# Development of Infrastructure for phase 1 of the Logistics area - Acceleration Plan BOQ 02

Schedule from Primavera P6, 2025-07-30 to 2027-03-01, data date 2026-10-20, costs in USD, A marks actual dates.

## Calendars

- DMM2-Logistics Area-21: Mon-Thu 08:00-16:00; Fri off; Sat-Sun 08:00-16:00. Exceptions (off unless hours are given): 2025-09-23, 2026-02-18 to 2026-02-19 08:00-11:00, 13:00-16:00, 2026-02-21 08:00-11:00, 13:00-16:00, 2026-02-22, 2026-02-23 to 2026-02-26 08:00-11:00, 13:00-16:00, 2026-02-28 to 2026-03-05 08:00-11:00, 13:00-16:00, 2026-03-07 to 2026-03-12 08:00-11:00, 13:00-16:00, 2026-03-14 to 2026-03-18 08:00-11:00, 13:00-16:00, 2026-03-19, 2026-03-21 to 2026-03-23, 2026-05-26 to 2026-05-28, 2026-05-30, 2026-09-23, 2027-01-29 08:00-16:00.
- Corporate - Standard Full Time-26: Mon-Fri 08:00-16:00; Sat-Sun off.

## Resources

| Resource | Group | Rate | Notes |
| --- | --- | --- | --- |
| Labor | labor |  | ï»? |
| Foreman | labor |  | ï»? |
| Operator | labor |  | ï»? |
| Loader | equipment |  |  |
| Water Tanker | equipment |  |  |
| Laboratory Officer | labor |  | ï»? |
| Welder | labor |  | ï»? |
| Carpenter | labor |  | ï»? |
| Steelfixer | labor |  | ï»? |
| Manlift | equipment |  |  |
| Mobile Crane | equipment |  |  |
| Welding Machine | equipment |  |  |
| Low Bed Truck | equipment |  |  |
| Plumber Helper | labor |  | ï»? |
| Plumber | labor |  | ï»? |
| Eng.Labour | labor |  | ï»? |
| Depth less than 1.5 | material | 345.05 |  |
| Depth: 1.51m - 2.5m | material | 383.69 |  |
| less than 1.5 | material | 496.95 |  |
| 1.51m - 2.5m | material | 578.6 |  |
| 2.51m - 3.5m | material | 720.84 |  |
| less than 1.5 | material | 717.33 |  |
| 1.51m - 2.5m | material | 846.39 |  |
| 2.51m - 3.5m | material | 931.56 |  |
| less than 1.5 | material | 803.37 |  |
| 1.51m - 2.5m | material | 920.14 |  |
| 2.51m - 3.5m | material | 1014.97 |  |
| less than 1.5 | material | 924.53 |  |
| 1.51m - 2.5m | material | 1031.65 |  |
| less than 1.5 | material | 1071.16 |  |
| 1.51m - 2.5m | material | 1165.98 |  |
| less than 1.5 | material | 965.8 |  |
| 1.51m - 2.5m | material | 1181.79 |  |
| less than 1.5 | material | 1243.25 |  |
| 1.51m - 2.5m | material | 1370.56 |  |
| 2.51m - 3.5m | material | 1568.11 |  |
| less than 1.5 | material | 1203.74 |  |
| 1.51m - 2.5m | material | 1440.8 |  |
| less than 1.5 | material | 1683.13 |  |
| 1.51m - 2.5m | material | 1683.13 |  |
| 2.51m - 3.5m | material | 1786.73 |  |
| 3.51m - 4.5m | material | 1897.36 |  |
| less than 1.5 | material | 1500.5 |  |
| 1.51m - 2.5m | material | 1640.1 |  |
| 2.51m - 3.5m | material | 1744.59 |  |
| 3.51m - 4.5m | material | 1854.34 |  |
| less than 1.5 | material | 1831.51 |  |
| 1.51m - 2.5m | material | 1831.51 |  |
| 2.51m - 3.5m | material | 1935.11 |  |
| 3.51m - 4.5m | material | 2045.74 |  |
| MH depth 1.50 - 2.5m | material | 8981.94 |  |
| MH depth 2.51 - 3.5m | material | 12732.8 |  |
| MH depth 3.51 - 4.5m | material | 17572.3 |  |
| MH depth 1.50 - 2.5m | material | 10853.8 |  |
| MH depth 2.51 - 3.5m | material | 14483.5 |  |
| Storm MH depth 1.50 - 2.5m | material | 13283.3 |  |
| Storm MH depth 2.51 - 3.5m | material | 17055.2 |  |
| Storm MH depth 3.51 -4.5m | material | 22461.9 |  |
| MH depth 4.51 -5.5m | material | 23628.7 |  |
| Size 3.0 x 3.0 m, depth 1.51-2.5 m | material | 19810.3 |  |
| Size 3.0 x 1.5 m, depth 1.51-2.5 m | material | 13544.9 |  |
| Size 2.5 x 1.5 m, depth 1.51-2.5 m | material | 12053.2 |  |
| Size 2.0 x 1.5 m, depth 2.51-3.5 m | material | 17995.5 |  |
| Size 1.5 x 1.5 m, depth 2.51-3.5 m | material | 15718 |  |
| Size 1.5 x 1.5 m, depth 3.51-4.5 m | material | 20151.9 |  |
| Single Catch basin | material | 4519.94 |  |
| Double Catch basin | material | 8808.1 |  |
| Sew HDPE Dia. 160 mm depth: 0- 1.5m | material | 105.36 |  |
| Sew HDPE Dia. 160 mm depth: 1.5 - 2.5m | material | 105.36 |  |
| Wash out chamber; on 160 mm dia pipeline | material | 25092.4 |  |
| Air valve chamber; on 160 mm dia pipeline | material | 16135.9 |  |
| Gate V dia 150 mm on Dia. 160 mm | material | 3122.17 |  |
| Wash out valve with dia (100 ) mm on pipes with dia (160) mm | material | 3464.59 |  |
| Air V with dia (50) mm on pipes with dia(160 ) mm. | material | 18641.7 |  |
| Sew. Discharge chamber, size 1500*2000 mm approximately | material | 16135.9 |  |
| Depth: 0.0m - 1.5m | material | 478.51 |  |
| Depth: 1.51m - 2.5m | material | 522.41 |  |
| Depth: 0.0m - 1.5m | material | 143.99 |  |
| Depth: 1.51m - 2.5m | material | 171.21 |  |
| POT Gate V dia 110 mm | material | 2317.92 |  |
| POT Wash out valve Dia. 100 mm on pipes with Dia. 110-400 mm | material | 3696.38 |  |
| POT Air valve Dia. 50 mm on pipes with Dia. less than 315 mm | material | 2644.54 |  |
| Wash out valve chamber; on 110-400 mm Dia. pipeline | material | 34347.4 |  |
| Air valve chamber; on less than 315 mm Dia. pipeline | material | 22137 |  |
| Flow meter | material | 27467.3 |  |
| Dia. 25mm 0.0m - 1.5m | material | 55.31 |  |
| Dia. 32mm 0.0m - 1.5m | material | 61.46 |  |
| Dia. 50mm 0.0m - 1.5m | material | 68.48 |  |
| Dia. 63mm 0.0m - 1.5m | material | 74.63 |  |
| Dia. 75mm 0.0m - 1.5m | material | 77.26 |  |
| Dia. 90mm 0.0m - 1.5m | material | 82.53 |  |
| Dia. 110mm 0.0m - 1.5m | material | 143.99 |  |
| Dia. 125mm 0.0m - 1.5m | material | 154.53 |  |
| Solenoid Valve box. 1 Solenoid valve Dia. 1 inch. | material | 1425.87 |  |
| Solenoid Valve box. 1 Solenoid valve Dia. 1.5 inch. | material | 1622.54 |  |
| Solenoid Valve box. 1 Solenoid valve Dia. 2.0inch. | material | 2086.13 |  |
| TSE Gate V Dia. 100 mm | material | 2317.92 |  |
| TSE Gate V Dia. 150 mm | material | 3504.98 |  |
| TSE Wash out valve Dia. 100 mm on pipes with Dia. 110-400 mm | material | 3696.38 |  |
| TSE Air valve Dia. 50 mm on pipes with Dia. less than 315 mm | material | 2644.54 |  |
| Depth: 0.0m - 1.5m | material | 478.51 |  |
| Depth: 1.51m - 2.5m | material | 522.41 |  |
| Depth: 0.0m - 1.5m | material | 576.85 |  |
| FF Gate V dia 250 mm | material | 4012.46 |  |
| FF Wash out valve Dia. 100 mm on pipes with Dia. 110-400 mm | material | 3696.38 |  |
| FF Air valve Dia. 50 mm on pipes with Dia. less than 315 mm | material | 2644.54 |  |
| FF Wash out valve chamber; on 110-400 mm Dia. pipeline | material | 34347.4 |  |
| FF Air valve chamber; on less than 315 mm Dia. pipeline | material | 22137 |  |
| Vertical multistage cintrifugal pump | material | 174047 |  |
| Split case cintrifugal pump | material | 1344394 |  |
| Vertical multistage cintrifugal (jockey) pump | material | 160806 |  |
| Butterfly Valve DN200 | material | 2677.02 |  |
| Butterfly Valve DN300 | material | 7211.89 |  |
| OverHead Crane | material | 98511.6 |  |
| 4x1Cx 630mm2 Cu/XLPE//PVC from nearest power supply (SEC) and from generator to the ATS and from ATS to MCC-PW | material | 1716.49 |  |
| 4Cx 10mm2 Cu/XLPE/SWA/PVC from MCC-PW to ELP | material | 87.8 |  |
| 4/Cx35mm²+1Cx16mm², CU/MICA/XLPE/LSOH, FIRE RESISTANT CABLE FROM MCC-PW TO Fire pump control panel | material | 193.16 |  |
| 4/Cx6mm² Cu/XLPE/PVC + 1Cx6mm² Cu/PVC from MCC-PW to potable water pumps | material | 72.87 |  |
| 4Cx 25mm2 + 1Cx16mm2 Cu/XLPE/PVC FROM MCC-PW to DB-PW | material | 135.21 |  |
| 3Cx 6mm2 Cu/XLPE/PVC FROM MCC-PW to the two fuel pumps. | material | 67.61 |  |
| 4Cx 25mm2 + 1Cx11mm2 Cu/XLPE/PVC FROM MCC-PW to DB-CH | material | 135.21 |  |
| 3Cx 6mm2 Cu/XLPE/PVC FROM MCC-SPS to the two fuel pumps. | material | 60.58 |  |
| 4Cx 10mm2 + 1Cx10mm2 Cu/XLPE/PVC FROM MCC-PW to EPS | material | 89.56 |  |
| 4Cx 6mm2 Cu/XLPE/SWA/PVC FROM EPS to LIGHTING POLES | material | 71.12 |  |
| Submersibel, wet installed pump | material | 165731 |  |
| Double flanged ductile iron pipe with Dia. 150 mm | material | 552.26 |  |
| Buried ductile iron pipes with Dia. 150 mm | material | 552.26 |  |
| Non return Valve DN150 | material | 4450.58 |  |
| Basket screens | material | 194242 |  |
| Odor Control Unit | material | 214408 |  |
| Surge Tank | material | 315237 |  |
| JIB Crane | material | 98511.6 |  |
| MCC - 160AT/250AF, 400V, 3PH, 60HZ, | material | 72956.5 |  |
| Local Control Panel, IP 65 | material | 11473.7 |  |
| 4Cx 95mm2 Cu/XLPE//PVC from nearest power supply (SEC) and generator to the ATS and from ATS to MCC-SPS | material | 304.67 |  |
| 4Cx 10mm2 Cu/XLPE/SWA/PVC from MCC-SPS to ELP | material | 87.8 |  |
| 4Cx 35mm2 + 1Cx16mm2 SUBMERGED RUBBER INSULATED FLEXIBLE CABLE from MCC to PUMP1& PUMP2. | material | 165.06 |  |
| 4Cx 10mm2 + 1Cx10mm2 Cu/XLPE/PVC FROM MCC-SPS to DB-SPS | material | 89.56 |  |
| 4Cx 10mm2 + 1Cx10mm2 Cu/XLPE/PVC FROM MCC-SPS to Penstok | material | 89.56 |  |
| 4Cx 10mm2 + 1Cx10mm2 Cu/XLPE/PVC FROM MCC-SPS to Odor Control Unit | material | 89.56 |  |
| 4Cx 6mm2 + 1Cx6mm2 Cu/XLPE/PVC FROM MCC-SPS to the mechanical bar screen | material | 67.61 |  |
| 3Cx 6mm2 Cu/XLPE/PVC FROM MCC-SPS to the two fuel pumps. | material | 60.58 |  |
| 4Cx 6mm2 + 1Cx6mm2 Cu/XLPE/PVC FROM MCC-SPS to the mechanical crane | material | 67.61 |  |
| Standby Diesel Generator Set 100 KVA, 400/230KVA, 3P, 60Hz in Sound Attenuated Enclosure | material | 206990 |  |
| Manually operated fuel pump | material | 4844.8 |  |
| Automatic Transfer Switch ATS panel | material | 41954.3 |  |
| Positive displacement rotary type pump | material | 6432.23 |  |
| Cable 13.8 kV 3Cx 500 mm² Al XLPE,/LLDPE / Unarmored | material | 343.3 |  |
| Copper Cable 13.8 kV 3Cx 50 mm² CU/XLPE/STA/PVC | material | 198.43 |  |
| Unit Substation 13.8/0.4 K V, 500kVA | material | 114158 |  |
| RMU, 13.8KV | material | 49835.3 |  |
| Cable, Copper 4x10mm2/ CU/XLPE/SWA/PVC + 1x10mm2 CU/PVC | material | 62.34 |  |
| Cable, Copper 4x50mm2/ CU/XLPE/PVC +1x25mm2 CU/PVC | material | 187.89 |  |
| 0.6/1 KV Low Voltage Distribution Pillars with 5 Outgoing feeders rated 200 Ampers Fuse type | material | 13038.3 |  |
| (6*50mm) HDPE ducts | material | 281.84 |  |
| (6*50mm+2*32mm) HDPE ducts | material | 438.12 |  |
| (6*50mm+4*32mm) HDPE ducts | material | 496.07 |  |
| (2*32mm) HDPE ducts | material | 156.28 |  |
| (4*32mm) HDPE ducts | material | 214.23 |  |
| (6*50mm+6*32mm) HDPE ducts | material | 539.09 |  |
| Telecom (6*32mm) HDPE ducts | material | 257.25 |  |
| Road crossing ducts, (6*50mm) HDPE | material | 311.69 |  |
| Road crossing ducts, (6*50mm+4*32mm) HDPE | material | 554.02 |  |
| Road crossing ducts, (2*32mm) HDPE | material | 163.31 |  |
| Manhole Type 1 | material | 7069.66 |  |
| Manhole Type 2 | material | 6322.48 |  |
| Street Lighting Feeder pillars, work shall include earthing for the lighting pillars. | material | 16341.3 |  |
| SL Cable, Copper 4x10mm2/ CU/XLPE/SWA/PVC + 1x10mm2 CU/PVC | material | 62.34 |  |
| Cable, Copper 4x16mm2/ CU/XLPE/SWA/PVC + 1x16mm2 CU/PVC | material | 86.04 |  |
| Lighting poles with 2 arms, height of ( 10) meters | material | 9213.73 |  |
| Lighting poles with 1 arm, height of ( 10) meters | material | 8923.99 |  |
| Lighting poles with 1 arm, height of ( 12 ) meters | material | 10372.7 |  |
| Lighting poles with 2 arms , height of (16 ) meters | material | 21614.6 |  |
| Street Lighting( LED), Lamp Lumen: 14560, Luminare Lumen:12700 , complete with control gear and lamp, (80) WATT. | material | 927.17 |  |
| Street Lighting( LED), Lamp Lumen: 24286, Luminare Lumen:20914, complete with control gear and lamp, (140) WATT. | material | 1065.89 |  |
| Street Lighting( LED), Lamp Lumen: 34805, Luminare Lumen:28310, complete with control gear and lamp, (190) WATT. | material | 1216.91 |  |
| DB-MGR Panel: 32/100 Ampere, 3P, IP66,60Hz incomer MCCB . For guard room 1 | material | 4716.62 |  |
| DB-GR Panel: 32/100 Ampere, 3P, IP66,60Hz incomer MCCB .For guard room 2 | material | 4693.79 |  |
| Sew Dia. 150mm Depth: 0.0m - 1.5m | material | 226.52 |  |
| Sew Dia. 150mm Depth: 1.51m - 2.5m | material | 287.11 |  |
| Sew Dia. 150mm Depth: 2.51m - 3.5m | material | 346.81 |  |
| Sew Dia. 200mm Depth: 0.0m - 1.5m | material | 278.33 |  |
| Sew Dia. 200mm Depth: 1.51m - 2.5m | material | 338.03 |  |
| Sew Dia. 200mm Depth: 2.51m - 3.5m | material | 398.61 |  |
| Sew Dia. 200mm Depth: 3.51m - 4.5m | material | 459.19 |  |
| Sew Dia. 200mm Depth: 4.51m -5.5m | material | 518.9 |  |
| MH depth 0 - 1.5m | material | 8981.94 |  |
| MH depth 1.51 - 2.5m | material | 12732.8 |  |
| MH depth 2.51 - 3.5m | material | 15294.8 |  |
| MH depth 2.51- 3.5 m with back drop | material | 17572.3 |  |
| MH depth 3.51 -4.5m | material | 20053.5 |  |
| MH depth 3.51- 4.5 m with back drop | material | 20053.5 |  |
| MH depth 4.51 -5.5m | material | 30889.8 |  |
| MH depth 4.51-5.5 m with back drop | material | 35213.9 |  |
| MH depth 6.0-5.51 m | material | 42256.4 |  |
| MH depth 6.0- 5.51 m with back drop | material | 46482.2 |  |
| 3-outlet fire hydrant (2 x 2.5 inch and 1 x 4.5 inch) in the form of a separate dry vacuum cylinder | material | 11010.1 |  |
| FF Flow meter | material | 27467.3 |  |
| FF Flow meter chamber | material | 34347.4 |  |
| Flow meter chamber | material | 34347.4 |  |
| Submersible pump | material | 154142 |  |
| BDI Dia. 80 mm | material | 379.3 |  |
| BDI Dia. 100 mm | material | 438.12 |  |
| BDI Dia. 200 mm | material | 563.68 |  |
| BDI Dia. 300 mm | material | 839.37 |  |
| BDI Dia. 350 mm | material | 904.34 |  |
| DDI Dia. 60 mm | material | 430.22 |  |
| DDI Dia. 80 mm | material | 450.41 |  |
| DDI Dia. 100 mm | material | 515.39 |  |
| DDI Dia. 200 mm | material | 637.43 |  |
| DDI Dia. 300 mm | material | 919.27 |  |
| DDI Dia. 350 mm | material | 1029.02 |  |
| Gate Valve DN60, | material | 989.51 |  |
| Gate Valve DN80, | material | 1487.33 |  |
| Gate Valve DN100, | material | 2358.31 |  |
| Gate Valve DN200, | material | 6791.33 |  |
| Gate Valve DN350, | material | 15518.6 |  |
| Non return Valve DN60 | material | 1185.3 |  |
| Non return Valve DN300 | material | 17025.3 |  |
| Electromagnetic Flowmeter DN80, PN16 | material | 19064.9 |  |
| Electromagnetic Flowmeter DN200, PN16 | material | 72666.8 |  |
| Surge Tank | material | 315237 |  |
| MCC - 200AT/200AF, 400V, 3PH, 60HZ, | material | 157712 |  |
| Local Control Panel, IP 65 | material | 11473.7 |  |
| DB-PW Panel: 100 Ampere, 3P, IP66,60Hz incomer MCCB | material | 6258.38 |  |
| DB-CL Panel: 100 Ampere, 3P, IP66,60Hz incomer MCCB | material | 6026.59 |  |
| ELP Panel: phtocell , timer,40 Ampere, 3P, IP66,60Hz incomer MCCB & 5ways outgoing MCCB | material | 10163.7 |  |
| Standby Diesel Generator Set 550 KVA, 400/230KVA, 3P, 60Hz in Sound Attenuated Enclosure | material | 379675 |  |
| Addressable fire alarm system | material | 89418.1 |  |
| Testing and commissioning of PLC system, serving the pumping station and all related utilities | material | 845193 |  |
| supply, install, test & commission Automatic Transfer Switch ATS panel | material | 87617.4 |  |
| Surveyor | labor |  | ï»? |
| Surveyor Helper | labor |  | ï»? |
| Excavator (With Bucket) | equipment |  |  |
| Dump Truck | equipment |  |  |
| Plate Compactor | equipment |  |  |
| Roller Compactor | equipment |  |  |
| Pipe encasement dia 160mm | material | 521.53 |  |
| Pipe encasement dia 150mm | material | 521.53 |  |
| Mason | labor |  | ï»? |
| Boom Truck | equipment |  |  |
| Electrician | labor |  |  |
| JCB | equipment |  |  |
| GRP Plot Connections dia 150 mm | material | 302.91 |  |
| less than 1.5 | material | 601.43 |  |
| less than 1.5 | material | 600.55 |  |
| Excavation | material | 46.53 |  |
| Footings for Potable water pump station & Potable water tank & chlorination | material | 1077.31 |  |
| 100 mm thickness lean concrete | material | 438.12 |  |
| Aggregate base course | material | 86.92 |  |
| 50 mm thickness lean concrete | material | 438.12 |  |
| Vapor retarders below slab on grade for Potable water pump station & chlorination | material | 6.15 |  |
| Vapor retarders for roof for Potable water pump station & Potable water tank & chlorination | material | 6.15 |  |
| Water proofing Paint below slab on grade for Potable water pump station & chlorination | material | 40.39 |  |
| Slab on grade and ground beams for Potable water pump station & Chlorination | material | 1107.16 |  |
| Reinforced Concrete Walls and columns for Potable water pump station & Potable water tank & chlorination | material | 1299.44 |  |
| Roof Slab and beams for Potable water pump station & Potable water tank & chlorination | material | 1239.74 |  |
| Concrete masonry unit, 200mm thick wall; for Potable water pump station, for Potable water tank, and for chlorination | material | 112.38 |  |
| Water proofing Membrane for roof for Potable water pump station & Potable water tank & chlorination | material | 75.51 |  |
| Sloped screed | material | 28.97 |  |
| Geotextile membrane for roof for Potable water pump station & Potable water tank & chlorination | material | 7.02 |  |
| 50mm foam concrete for roof layers for Potable water pump station & Potable water tank & chlorination | material | 28.97 |  |
| Gravel For Roof | material | 68.48 |  |
| Stone copping 30mm thickness for Potable water pump station & Potable water tank & chlorination | material | 191.4 |  |
| External plastering for Potable water pump station & Potable water tank & chlorination | material | 36 |  |
| Internal plastering for Potable water pump station& chlorination walls and ceiling | material | 33.36 |  |
| Painter | labor |  | ï»? |
| Internal painting (Acrylic) for Potable water pump station & chlorination walls | material | 32.49 |  |
| Internal painting (Emulsion) for Potable water pump station& chlorination ceiling | material | 35.12 |  |
| Concrete Finishing - Epoxy paint for internal floors | material | 46.53 |  |
| Lean concrete | material | 438.12 |  |
| Stairs for Potable water pump station | material | 990.38 |  |
| MEP Specialist | labor |  | ï»? |
| Chlorine Cylinder racks | material | 19122.8 |  |
| Chlorinators | material | 290319 |  |
| Discharge Line Analyzer | material | 245931 |  |
| Control Panel | material | 73246.3 |  |
| Motive Water Pumps | material | 18149.1 |  |
| Motive Water Pumps | material | 28046.8 |  |
| Fans - EXF-1 Exhaust roof mounted fan air flow capacity = 1280 l/s | material | 6258.38 |  |
| Fans - EF-01 Exhaust axial fan air flow capacity = 70 l/s | material | 1274.86 |  |
| DX wall mounted Split/AC | material | 3360.98 |  |
| FM200 supression system for Electrcal Room, room area 21m2 room volume 71m3. | material | 44121.3 |  |
| uPVC pipes with Dia. 110mm. | material | 107.12 |  |
| Pump St. Trench drain, dimensions 18000mmX300mmX300mm | material | 33378.1 |  |
| Scupper with Dia. 110mm | material | 1564.6 |  |
| Pump St. Manholes, dimensions 600mmX600mm | material | 4346.1 |  |
| Supply, install, test and commission 7572m3 capacity under ground fuel tank | material | 13229.7 |  |
| Supply, install, test and commission of manually operated fuel pump with flow range of Q= 0.2-1.6 L / REVOLUTION | material | 4844.8 |  |
| Supply, install, test and commission of positive displacement rotary type pump | material | 6432.23 |  |
| Pump St. 7 meter single arm galvanized steel pole with 1x80 watts LED Lighting Luminaire (10000 Lumens) 230V, 60Hz | material | 6757.09 |  |
| Pump St. HIGHBAY LED 76 WATTS, IP65, 230V, 60HZ, 12000 LUMENS, | material | 510.12 |  |
| Pump St. HIGHBAY LED 76 WATTS, IP65, 230V, 60HZ, 12000 LUMENS, with 3 hour emergency battery kit | material | 683.96 |  |
| Pump St. Surfaced Mounted Light, 36 watts LED IP65, 230V, 60Hz, 4200 lumens | material | 568.07 |  |
| Pump St. Surfaced Mounted Light, 36 watts LED IP65, 230V, 60Hz, 4200 lumens with 3 hour emergency battery kit | material | 741.91 |  |
| Pump St. WALL MOUNTED LED FLOODLIGHT 50 WATTS, IP65, 230V, 60HZ, 4300 LUMENS | material | 1553.18 |  |
| Pump St. WALL MOUNTED BULK HEAD OUTDOOR LED 15 WATTS, IP65,230V 60 HZ | material | 637.43 |  |
| Pump St. EMERGENCY EXIT SIGN (CEILING OR WALL MOUNTED) IP65,230V 60 HZ | material | 575.97 |  |
| 13A SINGLE SWITCH SOCKET OUTLET (WEATHER PROOF) | material | 405.64 |  |
| 13A DOUBLE SWITCH SOCKET OUTLET | material | 399.49 |  |
| 13A SINGLE SWITCH SOCKET OUTLET | material | 382.81 |  |
| 13A SPUR OUTLET | material | 423.2 |  |
| INDUSTRIAL SOCKET OUTLET, 400V, 3P, 60HZ, WITH GROUNDING | material | 463.58 |  |
| Grounding and lightning system | material | 39030.6 |  |
| Pump St. Data Cabinet including all devices 12U | material | 10083 |  |
| Pump St. Data/ voice RJ45 outlet include CAT6A cable | material | 811.27 |  |
| Testing and commissioning of all field instruments | material | 41701.5 |  |
| Testing and commissioning of all control, instrumentation | material | 91562.2 |  |
| Steel Door SD1 For chlorination size (2000x2300)mm | material | 12795.1 |  |
| Steel Door SD1 For potable water pump station size (2000x2550)mm | material | 13907.5 |  |
| Steel Door SD2 For potable water pump station size (900x2200)mm | material | 6432.23 |  |
| 90 mins fire rated Steel Door SD3 For potable water pump station size (1000x2200)mm | material | 4056.36 |  |
| Fill | material | 33.36 |  |
| external galvanized steel ladder for Potable water pump station length of 5m | material | 5215.32 |  |
| Sand trap louver 1500mm x 1500mm | material | 5519.99 |  |
| Louver 3400mm x 2800mm | material | 19043.8 |  |
| external galvanized steel ladder for Potable water pump station length of 3m | material | 3129.19 |  |
| external galvanized steel ladder for Potable water tank length of 4.3m | material | 4693.79 |  |
| Stainless steel A36 ladder for Potable water tank length of 4.5m | material | 4693.79 |  |
| external galvanized steel ladder for chlorination length of 4.3m | material | 4693.79 |  |
| handrail with approximate height 1.1m for potable water pump station | material | 417.05 |  |
| Aluminum exterior signage For Potable water pump station & chlorination size (300x150)mm | material | 405.64 |  |
| Aluminum interior signage For Potable water pump station size (300x150)mm | material | 405.64 |  |
| Steel shutter Door SD4 For potable water pump station size (3200x3000)mm | material | 30039.9 |  |
| PPR pipes with Dia. 25mm. | material | 30.73 |  |
| PPR pipes with Dia. 32mm. | material | 36.88 |  |
| PPR pipes with Dia. 40mm. | material | 43.9 |  |
| Hose bibb | material | 266.91 |  |
| Emergency shower | material | 8182.08 |  |
| Supply, installation, testing and commissioning of PLC system | material | 2397706 |  |
| Sew. Lft St. Excavation | material | 43.9 |  |
| Sew. Lft St. Fill | material | 33.36 |  |
| 100 mm thickness lean concrete under the foundation for wet well & valve chamber & Screening chamber & Control room | material | 438.12 |  |
| Footings for wet well & valve chamber & screening chamber & control room | material | 1101.01 |  |
| Slab on grade and ground beams for control room | material | 753.32 |  |
| Reinforced Concrete Walls for wet well and valve chamber & screening chamber | material | 1390.75 |  |
| Water proofing Membrane with 50mm screed protection fc' 20MPa | material | 128.19 |  |
| Water proofing Membrane with protection board | material | 80.78 |  |
| Reinforced Concrete Columns for control room | material | 1448.7 |  |
| Concrete masonry unit, 200mm thick wall; for control room | material | 112.38 |  |
| Roof Slab for wet well & valve chamber & screening chamber & control room | material | 1239.74 |  |
| Water proofing Membrane for roof for control room | material | 75.51 |  |
| Vapor retarders for roof for control room | material | 6.15 |  |
| Geotextile membrane for roof for control room | material | 7.02 |  |
| Gravel For control room Roof | material | 17.56 |  |
| 50mm slab on grade for roof layers for control room | material | 28.97 |  |
| Stone copping 30mm thickness for control room | material | 191.4 |  |
| External plastering for control room | material | 36 |  |
| Sloped screed for internal floors for wet well and valve chamber | material | 28.97 |  |
| Sloped screed for internal floors for Screening chamber | material | 28.97 |  |
| Epoxy paint for internal side for wet well and valve chamber | material | 46.53 |  |
| Epoxy paint for internal side for Screening chamber | material | 46.53 |  |
| Stainless steel A36 ladder for screening chamber length of 6.8m | material | 7301.45 |  |
| Stainless steel A36 ladder for wet well length of 8.6m | material | 9387.58 |  |
| Stainless steel A36 ladder for valve chamber length of 1.8m | material | 2086.13 |  |
| Stainless steel A36 cover at top of screening chamber & wet well size of 600x600mm | material | 2572.54 |  |
| Stainless steel A36 cover at top of screening chamber size of 700x1200mm | material | 2746.38 |  |
| Stainless steel A36 cover at top of wet well size of 2000x1000mm | material | 4751.74 |  |
| Medium duty lockable D.I. cover at top of valve chamber size of 600x600mm | material | 1506.65 |  |
| Internal plastering for control room walls and ceiling | material | 33.36 |  |
| Vapor retarders below slab on grade for control room | material | 6.15 |  |
| Water proofing Paint below slab on grade for control room | material | 57.95 |  |
| Epoxy paint for internal floors including skirting for control room | material | 46.53 |  |
| Internal painting (Acrylic) for control room walls & ceiling | material | 32.49 |  |
| External painting for control room | material | 35.12 |  |
| Steel Door SD1 For control room size (2000x2300)mm | material | 15407.1 |  |
| Manually operated Gate Valve DN150 | material | 3847.4 |  |
| Electrically operated penstock 200 * 200 mm, | material | 63453.1 |  |
| Supply, test and commissioning for screening container | material | 18543.4 |  |
| Scupper with Dia. 110mm | material | 1564.6 |  |
| DX wall mounted Split/AC | material | 3360.98 |  |
| CO2 fire extinguishers | material | 1129.99 |  |
| Powder fire extinguishers | material | 469.73 |  |
| Aluminum signage For control room size (300x150)mm | material | 405.64 |  |
| Supply, install and test the following grounding and lightning system | material | 15605.6 |  |
| DB-SPS Panel: 100 Ampere, 3P, IP66,60Hz incomer MCCB & 6 ways outgoing MCCB | material | 4809.68 |  |
| ELP Panel: phtocell , timer,40 Ampere, 3P, IP66,60Hz incomer MCCB & 5ways outgoing MCCB | material | 10163.7 |  |
| 2.084m3 capacity under ground fuel tank | material | 20861.3 |  |
| Surfaced Mounted Light | material | 568.07 |  |
| 7 meter single arm | material | 6757.09 |  |
| 13A DOUBLE SWITCH SOCKET OUTLET (WEATHER PROOF) | material | 405.64 |  |
| 20A SWITCH SOCKET OUTLET (FOR SPLIT UNIT), (WEATHER PROOF) | material | 423.2 |  |
| Supply and install addressable fire alarm system | material | 89418.1 |  |
| Supply, installation, testing and commissioning of all control, instrumentation | material | 259751 |  |
| Supply, installation, testing and commissioning of all field instruments | material | 41701.5 |  |
| Precast Concrete Kerb, Type K1 | material | 75.51 |  |
| Steel fence for lifting pump station (ZATCA HCIS) | material | 312.57 |  |
| Steel gate for lifting pump station size (7*2.7)m | material | 21904.3 |  |
| (EHH-1) 600mm x 600mm x 800mm concrete with hot dip galvanized heavy duty steel cover | material | 6721.97 |  |
| Precast Concrete Kerb, Type K4 | material | 69.36 |  |
| (EHH-2) 400mm x 400mm x 600mm concrete with hot dip galvanized heavy duty steel cover | material | 4867.63 |  |
| 60A, 3P, 60Hz Isolator/disconnect switches IP65 | material | 987.75 |  |
| 20A, 1P, 60Hz Isolator/disconnect switches IP65 | material | 564.55 |  |
| Bituminous base course(Grading I - Class A) | material | 549.63 |  |
| MC1/RC2 Sprayer | equipment |  |  |
| Bituminous concrete wearing course, after compaction(Grading I - Class A), including tack coat (RC2) | material | 590.02 |  |
| Curb Stone, Type K1 | material | 75.51 |  |
| Edge Curb, Type K4 | material | 75.51 |  |
| Heel Curb, Type K5 | material | 64.09 |  |
| 60mm thick - Interlocking block pavers for sidewalks and medians | material | 66.73 |  |
| Retroreflective Thermoplastic White Traffic lines | material | 29.85 |  |
| Road Marking Machine | equipment |  |  |
| Retroreflective Thermoplastic Yellow, Traffic lines | material | 29.85 |  |
| Traffic signs, ground mounted, 1 Sheet Alumenium, (breakaway) Single post | material | 1115.94 |  |
| Traffic signs, ground mounted, 2 Sheets Alumenium, (breakaway) Single post | material | 1537.38 |  |
| Ground mounted, 1 Sheet Alumenium powder coated UV printed, Single post | material | 1115.94 |  |
| Asphalt speed table | material | 12204.2 |  |
| 0.6/1 KV Low Voltage Distribution Panels for Industrial UPS - Cameras | material | 8228.62 |  |
| GR Excavation | material | 43.9 |  |
| Grader | equipment |  |  |
| GR Aggregate base course | material | 86.92 |  |
| Water proofing Paint below slab on grade for guard room type 1 & 2 | material | 17.56 |  |
| 100 mm thickness lean concrete under the foundation for Guard room Type 1 & 2 | material | 438.12 |  |
| Footings for guard room type 1 & 2 | material | 1101.01 |  |
| Vapor retarders for guard room type 1 & 2 | material | 6.15 |  |
| 50 mm thickness lean concrete under slab on grade for Guard room Type 1 & 2 | material | 438.12 |  |
| Slab on grade for guard room type 1 & 2 | material | 788.44 |  |
| uPVC Dia. 160mm. | material | 120.29 |  |
| uPVC Dia. 110mm. | material | 115.02 |  |
| uPVC Dia. 75mm. | material | 111.51 |  |
| uPVC Dia. 50mm. | material | 107.99 |  |
| PPR Dia. 32mm. | material | 27.22 |  |
| PPR Dia. 25mm. | material | 21.95 |  |
| PPR Dia. 20mm. | material | 18.44 |  |
| Scupper Dia. 110mm | material | 1390.75 |  |
| Clean out Dia. 110mm | material | 254.62 |  |
| Floor drain | material | 510.12 |  |
| Manhole, dimensions 600mmX600mm | material | 3766.62 |  |
| Gravel | material | 17.56 |  |
| Reinforced Concrete columns for guard room type 1 & 2 | material | 1448.7 |  |
| Concrete masonry unit, 200mm thick wall; for guard room type 1 & 2 | material | 112.38 |  |
| Concrete masonry unit, 150mm thick wall; for guard room type 1 & 2 | material | 86.92 |  |
| Roof Slab and beams for guard room type 1 & 2 | material | 1239.74 |  |
| Sloped screed for roof for Guard room Type 1 & 2 | material | 28.97 |  |
| Water proofing Membrane for roof for guard room type 1 & 2 | material | 75.51 |  |
| Water proofing Membrane with protection board for guard room type 1 & 2 | material | 80.78 |  |
| 50mm Extruded polystyrene insulation for roof for guard room type 1 & 2 | material | 40.39 |  |
| 50mm foam concrete for roof layers for guard room type 1 & 2 | material | 28.97 |  |
| Stone coping 30mm thickness for guard room type 1 & 2 | material | 191.4 |  |
| Aluminum window W01 size (1.3m x 1.4m) for guard room type 1 & 2 | material | 2320.55 |  |
| Aluminum window W02 size (0.6m x 0.9m) For guard room 1 | material | 1274.86 |  |
| External plastering for guard room type 1 & 2 | material | 36 |  |
| Water proofing Membrane with 50mm screed protection fc' 20MPa for guard room type 1 & 2 | material | 128.19 |  |
| External painting for guard room type 1 & 2 | material | 51.8 |  |
| Cementitious Water proofing for wet areas for guard room type 1 & 2 | material | 51.8 |  |
| Internal plastering for guard room type 1 & 2 | material | 33.36 |  |
| DX wall mounted Split/AC For guard room type 1&2 | material | 3187.14 |  |
| EF-01 Exhaust axial fan air flow capacity = 50 l/s | material | 1158.96 |  |
| Electrical Water Heater 50L capacity | material | 799.86 |  |
| 4Cx 6mm2 + 1Cx6mm2 Cu/XLPE/PVC FROM KWHM to DB-MGR For guard room 1 & 2 | material | 67.61 |  |
| GR Supply, install and test the following grounding and lightning system | material | 15647.7 |  |
| Fire alarm system | material | 64569 |  |
| Data/ voice RJ45 outlet include CAT6A cable for guard room 1 | material | 811.27 |  |
| RJ45 connector include CAT6A cable for security cameras for guard room 1&2 | material | 978.97 |  |
| Switch 20A, 1P, 60Hz Isolator/disconnect switches IP65 guard room 1&2 | material | 423.2 |  |
| 20A DOUBLE POLE SWITCH, IP56, For guard room 1 | material | 423.2 |  |
| 13A SPUR OUTLET, For guard room 1&2 | material | 423.2 |  |
| 13A SINGLE SWITCH SOCKET OUTLET, For guard room 1&2 | material | 382.81 |  |
| 13A DOUBLE SWITCH SOCKET OUTLET, For guard room 1&2 | material | 399.49 |  |
| Internal painting for guard room type 1 & 2 | material | 32.49 |  |
| Porcelain flooring tiles size (600x600)mm For guard room 1 | material | 109.75 |  |
| Ceramic wall tiles size (300x300)mm For guard room 1 | material | 104.48 |  |
| Porcelain skirting 100mm height for guard room type 1 & 2 | material | 51.8 |  |
| Raised floor finish for guard room 1 | material | 1101.01 |  |
| Gypsum board ceiling, including paint for guard room type 1 & 2 | material | 127.31 |  |
| Steel Door SD1 size (1m x 2.2m) for guard room type 1 & 2 | material | 4056.36 |  |
| Wood Door TD1 size (0.75m x 2.2m) For guard room 1 | material | 2491.76 |  |
| Wood Door TD2 size (0.9m x 2.2m) For guard room 1 | material | 2781.5 |  |
| Toilet | material | 793.71 |  |
| Shower | material | 927.17 |  |
| Semi pedestal sink | material | 602.31 |  |
| ROUND RECESSED LED 11.5 WATTS, IP20, 230V, 60HZ, 1400 LUMENS, For guard room 1&2 | material | 544.36 |  |
| ROUND RECESSED LED 11.5 WATTS, IP20, 230V, 60HZ, 1400 LUMENS, with 3 hour emergency battery kit For guard room 1 | material | 718.2 |  |
| ROUND RECESSED LED 11.5 WATTS, IP44, 230V, 60HZ, 1400 LUMENS, For guard room 1 | material | 561.92 |  |
| WALL MOUNTED BULK HEAD OUTDOOR LED 15 WATTS, IP65,230V 60 HZ, For guard room 1&2 | material | 637.43 |  |
| Data Cabinet including all devices 12U for guard room 1 | material | 10083 |  |
| 50 inch screen for guard room 1 | material | 2665.61 |  |
| PC workstation for guard room 1 | material | 9271.68 |  |
| GR CO2 fire extinguishers | material | 1101.01 |  |
| Powder fire extinguishers For guard room type 1&2 | material | 440.76 |  |
| Porcelain flooring tiles size (300x300)mm for guard room type 1 & 2 | material | 109.75 |  |
| Porcelain flooring tiles size (500x500)mm for guard room type 1 & 2 | material | 109.75 |  |
| Landscape Specialist | labor |  | ï»? |
| Cassia glauca | material | 1390.75 |  |
| Steel fence (MODON) | material | 753.32 |  |
| Size (1.6x 2.7)m | material | 5006.36 |  |
| Size (4.5x 2.7)m | material | 14081.4 |  |
| Delonix Regia | material | 1390.75 |  |
| Schinus Molle | material | 2317.92 |  |
| Size (4.35x 2.7)m | material | 13611.6 |  |
| Steel fence (ZATCA HCIS) | material | 220.38 |  |
| Size (4.1x 2.7)m | material | 12829.3 |  |
| Size (3.35x 2.7)m | material | 10482.4 |  |
| Size (3.25x 2.7)m | material | 10169.9 |  |
| Ceratonia Siliqua | material | 1043.06 |  |
| Milettia pinnata/ Pongamia glabra | material | 1506.65 |  |
| Tamarindus indica | material | 5215.32 |  |
| Dodonaea viscosa | material | 289.74 |  |
| Leucophyllun Frutescens | material | 289.74 |  |
| Tecomaria Capensis | material | 289.74 |  |
| Pennisetum setaceum | material | 75.51 |  |
| 75mm thickness for shrubs and grasses | material | 64.09 |  |
| 75mm thickness for trees | material | 64.09 |  |
| Plastic edge | material | 28.97 |  |
| 30-50 mm Dia. (G1) | material | 28.97 |  |
| 12-25 mm Dia. (G2) | material | 40.39 |  |
| Removal of curbstone | material | 7.9 |  |
| Removal of bituminous concrete wearing course only | material | 11.41 |  |
| Removal of concrete protection | material | 28.97 |  |
| Removal of riprap | material | 40.39 |  |
| Removal of culvert's wing walls | material | 1738.44 |  |
| Selective Tree Removal | material | 1622.54 |  |
| Dismantling and relocation of existing inlets | material | 9271.68 |  |
| Dismantling and level adjustment for storm manholes | material | 660.26 |  |
| Removal of traffic signs | material | 46.53 |  |
| Surface Dewatering | material | 2897400 |  |
| Dewatering pump | equipment |  |  |
| Concrete for box culvert | material | 1448.7 |  |
| Steel Reinforcement for box culverts | material | 4055.48 |  |
| Excavation (all types of soil) | material | 14.93 |  |
| Fill | material | 28.1 |  |
| Excavation for Trench size 60cm wide and 80cm deep ( for 2 cables) | material | 22.83 |  |
| Duct bank for MV cables UPVC (4xDia. 150mm) | material | 550.51 |  |
| Embankment backfiling | material | 27.22 |  |
| Subgrade | material | 29.85 |  |
| Aggregate base course | material | 86.92 |  |
| Roadway Excavation for cuttings (all types of soil) | material | 14.93 |  |
| Dropped Curb, Type K3 | material | 80.78 |  |
| Transition Curb | material | 80.78 |  |
| Traffic signs, ground mounted, 1 Sheets Alumenium, (breakaway) Double post | material | 3117.78 |  |
| Ground mounted, 1 Sheet Alumenium powder coated UV printed, Double post | material | 3117.78 |  |
| Wheels stopper (precast concrete) | material | 173.84 |  |
| Straight joints cables for 13.8 kv 3Cx 500 mm², Al /XLPE/LLDPE | material | 3940.46 |  |
| Cable Termination for 13.8 kv 3Cx 500 mm², Al /XLPE/LLDPE | material | 3360.98 |  |
| REPLACING - Dismantling and relocating the existing MV power cables | material | 352.08 |  |
| Telecommunication Manholes | material | 6606.07 |  |
| Telecommunication network components | material | 202.82 |  |
| SL Earthing Including lighting poles circuits | material | 2009.74 |  |
| SL Excavation for Trench size 40cm wide and 65cm deep (for 1 cable) | material | 22.83 |  |
| Road Crossing Duct for Street Lighting cables UPVC (2xDia. 110mm) | material | 275.69 |  |
| SL Excavation for Trench size 60cm wide and 65cm deep ( for 2 cables) | material | 22.83 |  |
| Road Crossing Duct for Street Lighting cables UPVC (4xDia. 110mm) | material | 421.44 |  |
| Drawpit with medium duty steel cover, size600x600x900mm, | material | 5931.77 |  |
| SL Poles Relocation | material | 6026.59 |  |
| Excavation for Trench size 40cm wide and 65cm deep (for 1 cable) | material | 22.83 |  |
| Duct bank for LV cables UPVC (2xDia. 110mm) | material | 275.69 |  |
| SL LV Excavation for Trench size 40cm wide and 65cm deep (for 1 cable) | material | 22.83 |  |
| Excavation for Trench size 60cm wide and 65cm deep ( for 2 cables) | material | 22.83 |  |
| Duct bank for LV cables UPVC (4xDia. 110mm) | material | 421.44 |  |
| SL LV Excavation for Trench size 60cm wide and 65cm deep ( for 2 cables) | material | 22.83 |  |
| Potable Plots and Buildings Crossing Connections Dia. 110 mm | material | 447.78 |  |
| Two wire decoder cable 12 awg | material | 14.05 |  |
| Bubbler | material | 40.39 |  |
| Pull Box - 600mm (L) X 600mm (W) | material | 1078.18 |  |
| Extra flexible dripline | material | 4.39 |  |
| Dripper | material | 13.17 |  |
| SL Excavation for Trench size 90cm wide and 65cm deep ( for 3 cables) | material | 22.83 |  |
| Road Crossing Duct for Street Lighting cables UPVC (6xDia. 110mm) | material | 568.94 |  |
| Excavation for Trench size 40cm wide and 80cm deep (for 1 cable) | material | 22.83 |  |
| Duct bank for MV cables UPVC (2xDia. 150mm) | material | 338.03 |  |
| Dismantling and relocating the existing LV power cables | material | 326.62 |  |
| Excavation for Trench size 90cm wide and 65cm deep ( for 3 cables) | material | 22.83 |  |
| Duct bank for LV cables UPVC (6xDia. 110mm) | material | 568.94 |  |
| SL LV Excavation for Trench size 90cm wide and 65cm deep ( for 3 cables) | material | 22.83 |  |
| Excavation for Trench size 120cm wide and 65cm deep ( for 4 cables) | material | 22.83 |  |
| Duct bank for LV cables UPVC (8xDia. 110mm) | material | 730.5 |  |
| SL LV Excavation for Trench size 120cm wide and 65cm deep ( for 4 cables) | material | 22.83 |  |
| Supply and installation of KWH meter mounting a frame only | material | 8692.2 |  |
| Water proofing Membrane with protection board | material | 80.78 |  |
| Water proofing Membrane with 50mm screed protection fc' 20MPa | material | 128.19 |  |
| Stainless steel A36 cover at top of Potable water tank size of 950x950mm | material | 2086.13 |  |
| Geotextile to protect trees planting soil | material | 7.02 |  |
| Geotextile below gravel bed | material | 7.02 |  |
| Size (6.1x 2.7)m | material | 20996.5 |  |
| Size (5.5x 2.7)m | material | 18931.4 |  |
| Size (4.85x 2.7)m | material | 15176.2 |  |
| Removal of existing building (approximate area 4 sq.m) | material | 3940.46 |  |
| 30 cm thick. filter layer of crushed stone (aggregate) (3/4" to 1") | material | 200.18 |  |
| Normally Open Point 13.8 KV Outdoor type | material | 40795.4 |  |
| External painting for Potable water pump station & water tank & chlorination | material | 35.12 |  |
| Strainer DN80 | material | 884.15 |  |
| Strainer DN350 | material | 11975 |  |
| CO2 fire extinguishers | material | 1129.99 |  |
| Powder fire extinguishers | material | 469.73 |  |
| 630A, 3P, 60Hz Isolator/disconnect switches IP65 | material | 6678.95 |  |
| 40A, 3P, 60Hz Isolator/disconnect switches IP65 | material | 705.03 |  |
| 20A, 1P, 60Hz Isolator/disconnect switches IP65 | material | 564.55 |  |
| Electrical Hand Hole (EHH-1) 600mm x 600mm x 800mm | material | 6721.97 |  |
| Electrical Hand Hole (EHH-2) 400mm x 400mm x 600mm | material | 4867.63 |  |
| Azadirachta indica | material | 869.22 |  |
| Safety Personnel | labor |  | ï»? |
| Draftsman | labor |  | ï»? |
| Document Controller | labor |  | ï»? |
| QC Engineer | labor |  | ï»? |
| Lead Engineer | labor |  | ï»? |
| Project Manager | labor |  | ï»? |
| Driver | labor |  | ï»? |
| Quantity Surveyor | labor |  | ï»? |
| Electrical Engineer | labor |  | ï»? |
| Purchaser | labor |  | ï»? |
| Procurement Officer | labor |  | ï»? |
| Storekeeper | labor |  | ï»? |
| Service Car | equipment |  |  |
| Nurse | labor |  | ï»? |
| Mechanical Engineer | labor |  | ï»? |
| HSE Manager | labor |  | ï»? |
| W-Beam Guard Rail | material | 280 |  |
| Provisional Sum | material | 1 |  |

## Schedule

| ID | WBS | Activity | Type | Duration | Start | Finish | Predecessors | Complete | Total float | Free float | Open End | DMM2 Weekly Progress | Networks & Stations | DMM2 Phases | UNASCO |
| --- | --- | --- | --- | --- | --- | --- | --- | --- | --- | --- | --- | --- | --- | --- | --- |
|  | Milstones | **Milestones** |  |  | 2025-07-30 | 2027-03-01 |  |  |  |  |  |  |  |  |  |
|  | Cont. Milstones | **Contractual Milestones** |  |  | 2025-07-30 | 2027-03-01 |  |  |  |  |  |  |  |  |  |
| DMM-Mil-1 |  | Project Commencement (Start) - Kickoff | milestone | 0d | 2025-07-30 A | 2025-07-30 A |  | 100% |  |  | UDF_G3 |  |  |  |  |
| DMM-Mil-38 |  | Mobilization - Finish | milestone | 0d | 2025-11-25 A | 2025-11-25 A | DMM2-Mob-010 FF, DMM2-Mob-025 FF, DMM2-Mob-026 FF, DMM2-Mob-04 FF, DMM2-Mob-05 FF, DMM2-Mob-06 FF, DMM2-Mob-07 FF, DMM2-Mob-08 FF, DMM2-Mob-09 FF, DMM2-Mob-34 FF, DMM2-Mob-012 FF, DMM2-Mob-019 FF, DMM2-Mob-020 FF, DMM2-Mob-021 FF, DMM2-Mob-022 FF, DMM2-Mob-023 FF, DMM2-Mob-024 FF | 100% |  |  |  |  |  |  |  |
| DMM-Mil-4 |  | Engineering - Finish | milestone | 0d | 2026-11-08 | 2026-11-08 | DMM2-Eng-SD-02 FF, DMM2-Eng-SD-04 FF, DMM2-Eng-SD-06 FF, DMM2-Eng-SD-38 FF, DMM2-Eng-SD-58 FF, DMM2-Eng-SD-08 FF, DMM2-Eng-SD-09 FF, DMM2-Eng-SD-012 FF, DMM2-Eng-SD-014 FF, DMM2-Eng-SD-016 FF, DMM2-Eng-SD-018 FF, DMM2-Eng-SD-020 FF, DMM2-Eng-SD-022 FF, DMM2-Eng-SD-024 FF, DMM2-Eng-SD-026 FF, DMM2-Eng-SD-028 FF, DMM2-Eng-PQ-148 FF, DMM2-Eng-PQ-158 FF, DMM2-Eng-PQ-168 FF, DMM2-Eng-PQ-178 FF, DMM2-Eng-PQ-188 FF, DMM2-Eng-PQ-1928 FF, DMM2-Eng-PQ-198 FF, DMM2-Eng-PQ-208 FF, DMM2-Eng-PQ-218 FF, DMM2-Eng-PQ-228 FF, DMM2-Eng-PQ-238 FF, DMM2-Eng-PQ-248 FF, DMM2-Eng-PQ-258 FF, DMM2-Eng-PQ-268 FF, DMM2-Eng-PQ-278 FF, DMM2-Eng-PQ-288 FF, DMM2-Eng-PQ-1628 FF, DMM2-Eng-PQ-1638 FF, DMM2-Eng-PQ-298 FF, DMM2-Eng-PQ-308 FF, DMM2-Eng-PQ-318 FF, DMM2-Eng-PQ-328 FF, DMM2-Eng-PQ-1758 FF, DMM2-Eng-PQ-338 FF, DMM2-Eng-PQ-348 FF, DMM2-Eng-PQ-358 FF, DMM2-Eng-PQ-368 FF, DMM2-Eng-PQ-1688 FF, DMM2-Eng-PQ-1698 FF, DMM2-Eng-PQ-1708 FF, DMM2-Eng-PQ-1718 FF, DMM2-Eng-PQ-378 FF, DMM2-Eng-PQ-388 FF, DMM2-Eng-PQ-398 FF, DMM2-Eng-PQ-1728 FF, DMM2-Eng-PQ-1738 FF, DMM2-Eng-PQ-1748 FF, DMM2-Eng-PQ-408 FF, DMM2-Eng-PQ-418 FF, DMM2-Eng-PQ-428 FF, DMM2-Eng-PQ-438 FF, DMM2-Eng-PQ-448 FF, DMM2-Eng-PQ-458 FF, DMM2-Eng-PQ-468 FF, DMM2-Eng-PQ-478 FF, DMM2-Eng-PQ-488 FF, DMM2-Eng-PQ-498 FF, DMM2-Eng-PQ-1768 FF, DMM2-Eng-PQ-1778 FF, DMM2-Eng-PQ-1788 FF, DMM2-Eng-PQ-1798 FF, DMM2-Eng-PQ-1808 FF, DMM2-Eng-PQ-1818 FF, DMM2-Eng-PQ-1828 FF, DMM2-Eng-PQ-1838 FF, DMM2-Eng-PQ-508 FF, DMM2-Eng-PQ-518 FF, DMM2-Eng-PQ-528 FF, DMM2-Eng-PQ-538 FF, DMM2-Eng-PQ-548 FF, DMM2-Eng-PQ-558 FF, DMM2-Eng-PQ-568 FF, DMM2-Eng-PQ-578 FF, DMM2-Eng-PQ-588 FF, DMM2-Eng-PQ-598 FF, DMM2-Eng-PQ-608 FF, DMM2-Eng-PQ-618 FF, DMM2-Eng-PQ-628 FF, DMM2-Eng-PQ-638 FF, DMM2-Eng-PQ-1848 FF, DMM2-Eng-PQ-1858 FF, DMM2-Eng-PQ-1868 FF, DMM2-Eng-PQ-1878 FF, DMM2-Eng-PQ-1888 FF, DMM2-Eng-PQ-1898 FF, DMM2-Eng-PQ-1908 FF, DMM2-Eng-PQ-1938 FF, DMM2-Eng-PQ-648 FF, DMM2-Eng-PQ-658 FF, DMM2-Eng-PQ-668 FF, DMM2-Eng-PQ-678 FF, DMM2-Eng-PQ-688 FF, DMM2-Eng-PQ-698 FF, DMM2-Eng-PQ-708 FF, DMM2-Eng-PQ-718 FF, DMM2-Eng-PQ-728 FF, DMM2-Eng-PQ-738 FF, DMM2-Eng-PQ-748 FF, DMM2-Eng-PQ-758 FF, DMM2-Eng-PQ-768 FF, DMM2-Eng-PQ-778 FF, DMM2-Eng-PQ-788 FF, DMM2-Eng-PQ-798 FF, DMM2-Eng-PQ-808 FF, DMM2-Eng-PQ-818 FF, DMM2-Eng-PQ-828 FF, DMM2-Eng-PQ-838 FF, DMM2-Eng-PQ-848 FF, DMM2-Eng-PQ-858 FF, DMM2-Eng-PQ-868 FF, DMM2-Eng-PQ-878 FF, DMM2-Eng-PQ-888 FF, DMM2-Eng-PQ-898 FF, DMM2-Eng-PQ-908 FF, DMM2-Eng-PQ-918 FF, DMM2-Eng-PQ-938 FF, DMM2-Eng-PQ-948 FF, DMM2-Eng-PQ-958 FF, DMM2-Eng-PQ-968 FF, DMM2-Eng-PQ-978 FF, DMM2-Eng-PQ-988 FF, DMM2-Eng-PQ-1008 FF, DMM2-Eng-PQ-998 FF, DMM2-Eng-PQ-1018 FF, DMM2-Eng-PQ-1028 FF, DMM2-Eng-PQ-1038 FF, DMM2-Eng-PQ-1048 FF, DMM2-Eng-PQ-1058 FF, DMM2-Eng-PQ-1068 FF, DMM2-Eng-PQ-1078 FF, DMM2-Eng-PQ-1088 FF, DMM2-Eng-PQ-1098 FF, DMM2-Eng-PQ-1108 FF, DMM2-Eng-PQ-1118 FF, DMM2-Eng-PQ-1128 FF, DMM2-Eng-PQ-1138 FF, DMM2-Eng-PQ-1148 FF, DMM2-Eng-PQ-1158 FF, DMM2-Eng-PQ-1168 FF, DMM2-Eng-PQ-1178 FF, DMM2-Eng-PQ-1188 FF, DMM2-Eng-PQ-1198 FF, DMM2-Eng-PQ-1208 FF, DMM2-Eng-PQ-1218 FF, DMM2-Eng-PQ-1228 FF, DMM2-Eng-PQ-1238 FF, DMM2-Eng-PQ-1248 FF, DMM2-Eng-PQ-1258 FF, DMM2-Eng-PQ-1268 FF, DMM2-Eng-PQ-1278 FF, DMM2-Eng-PQ-1288 FF, DMM2-Eng-PQ-1298 FF, DMM2-Eng-PQ-1308 FF, DMM2-Eng-PQ-1318 FF, DMM2-Eng-PQ-1328 FF, DMM2-Eng-PQ-1338 FF, DMM2-Eng-PQ-1348 FF, DMM2-Eng-PQ-1358 FF, DMM2-Eng-PQ-1368 FF, DMM2-Eng-PQ-1378 FF, DMM2-Eng-PQ-1388 FF, DMM2-Eng-PQ-1398 FF, DMM2-Eng-PQ-1408 FF, DMM2-Eng-PQ-1418 FF, DMM2-Eng-PQ-1428 FF, DMM2-Eng-PQ-1438 FF, DMM2-Eng-PQ-1448 FF, DMM2-Eng-PQ-1458 FF, DMM2-Eng-PQ-1468 FF, DMM2-Eng-PQ-1478 FF, DMM2-Eng-PQ-1488 FF, DMM2-Eng-PQ-1498 FF, DMM2-Eng-PQ-1508 FF, DMM2-Eng-PQ-1518 FF, DMM2-Eng-PQ-1528 FF, DMM2-Eng-PQ-1538 FF, DMM2-Eng-PQ-1548 FF, DMM2-Eng-PQ-1558 FF, DMM2-Eng-PQ-1568 FF, DMM2-Eng-PQ-1578 FF, DMM2-Eng-PQ-1588 FF, DMM2-Eng-PQ-1598 FF, DMM2-Eng-PQ-1608 FF, DMM2-Eng-PQ-1618 FF, DMM2-Eng-SD-010 FF, DMM2-Eng-MS-338 FF, DMM2-Eng-PQ-041, DMM2-Eng-PQ-1548, DMM2-Eng-PQ-1398, DMM2-Proc-PO-0141, DMM2-Eng-PQ-1558, DMM2-Eng-PQ-042, DMM2-Proc-PO-01 |  | 95.32d | 0d |  |  |  |  |  |
| DMM-Mil-2 |  | Medium Voltage Network - Finish | milestone | 0d | 2026-12-19 | 2026-12-19 | B2.33 71 00.297 FF, B2.33 71 00.295 FF, B2.33 71 00.293 FF, B2.33 71 00.289 FF, B2.33 71 00.291 FF, B2.33 71 00 02 45 FF, B2.33 71 00.287 FF, B2.33 71 00.285 FF, B2.33 71 00.213 FF, B2.33 71 00.021_R FF, B1.2.31 23 16.01.16, B2 33 73 00.01.19 |  | 62.91d |  |  | Cons. | MV | Cons |  |
| DMM-Mil-3 |  | Road Works & Asphalt - Finish | milestone | 0d | 2026-12-22 | 2026-12-22 | B1.2.32 11 26.01.1_R FF, B1.2.32 11 26.01.10_R FF, B1.2.32 11 26.01.11_R FF, B1.2.32 11 26.01.12_R FF, B1.2.32 11 26.01.13_R FF, B1.2.32 11 26.01.14_R FF, B1.2.32 11 26.01.15 FF, B1.2.32 11 26.01.16 FF, B1.2.32 11 26.01.17 FF, B1.2.32 11 26.01.2_R FF, B1.2.32 11 26.01.3 FF, B1.2.32 11 26.01.4 FF, B1.2.32 11 26.01.5 FF, B1.2.32 11 26.01.6 FF, B1.2.32 11 26.01.7_R FF, B1.2.32 11 26.01.8_R FF, B1.2.32 11 26.01.9 FF, DMM-Mil-48 FF |  | 27d |  |  |  |  |  |  |
| DMM-Mil-28 |  | Project Commencement Finish | milestone | 0d | 2027-03-01 | 2027-03-01 | Clsout.13.2.1.11 FF, DMM-Mil-5 FF, DMM-Mil-10 FF, DMM-Mil-7 FF, DMM-Mil-11 FF, DMM-Mil-8 FF, DMM-Mil-6 FF, DMM-Mil-12 FF, DMM-Mil-9 FF, DMM-Mil-17 FF, DMM-Mil-18 FF, DMM-Mil-15 FF, DMM-Mil-16 FF, DMM-Mil-13 FF, DMM-Mil-14 FF, DMM-Mil-2 FF, DMM2-Mob-44 FF |  | 0d |  | UDF_G3 |  |  |  |  |
|  | Control | **Control Milestones** |  |  | 2026-11-10 | 2027-01-02 |  |  |  |  |  |  |  |  |  |
|  | Networks Milstones | **Networks & Stations** |  |  | 2026-11-28 | 2026-12-30 |  |  |  |  |  |  |  |  |  |
| DMM-Mil-7 |  | Potable Water Network - Finish | milestone | 0d | 2026-11-28 | 2026-11-28 | B3.33 14 19.01.fm18 FF, B3.33 05 63.02.34 FF, B3.33 14 13-10107_R FF, B3.33 14 13.02.013, B3.33 14 19.01.109 |  | 80.32d |  |  | Cons. | Potable | Cons | ML.UNSC |
| DMM-Mil-6 |  | Storm Water Network - Finish | milestone | 0d | 2026-11-29 | 2026-11-29 | B6.33 05 63.044 FF, B6.33 05 63.07.4 FF, B6.33 05 13.09.5 |  | 34.92d | 19.32d |  | Cons. | Storm | Cons | ML.UNSC |
| DMM-Mil-17 |  | Potable Water Pump Station - Finish | milestone | 0d | 2026-12-02 | 2026-12-02 | B3.2.32 11 23.01.249 FF, B3.2.32 11 23.01.250 |  | 25.92d | 0d |  | Cons. | Pump | Cons | ML.UNSC |
| DMM-Mil-11 |  | Fire Fighting Network - Finish | milestone | 0d | 2026-12-02 | 2026-12-02 | B3.33 14 19.01.fm51 FF, B3.33 05 63.02.59, B3.33 14 19.01.fh21_R, B3.33 05 63.01.59_R FF, B3.33 14 19.01.fh30 FF, B3.33 05 63.02.49 FF, B3.33 14 19.01.fh39, B3.33 05 63.02.69 |  | 76.91d |  |  | Cons. | Fire | Cons | ML.UNSC |
| DMM-Mil-5 |  | Sewerage Network - Finish | milestone | 0d | 2026-12-06 | 2026-12-06 | B6.33 05 39.01.817_R FF, B6.33 05 39.01.1017 FF, B5.33 31 00.01.0248 FF, B3.33 14 19.01.33, B5.33 05 13.054_R, B6.33 05 39.01.1857_R |  | 74.1d |  |  | Cons. | Sew | Cons | ML.UNSC |
| DMM-Mil-18 |  | Sewage Lift Station - Finish | milestone | 0d | 2026-12-15 | 2026-12-15 | B5.1.31 23 16.01.149 FF |  | 40.32d | 11.32d |  | Cons. | Lift | Cons |  |
| DMM-Mil-8 |  | TSE Network - Finish | milestone | 0d | 2026-12-17 | 2026-12-17 | B3.33 05 63.01.74 FF, B3.33 05 63.02.99 FF |  | 63.32d |  |  | Cons. | TSE | Cons | ML.UNSC |
| DMM-Mil-10 |  | Low Voltage Network - Finish | milestone | 0d | 2026-12-19 | 2026-12-19 | B2.33 71 26 031 FF, B2.33 71 26 032 FF, B2.33 71 26 013, B2.33 71 26 26, B2.33 71 26 32, B2.33 71 26 023 FF, B2.33 71 26 29 FF, B2.33 71 00 02 114 |  | 62.32d |  |  | Cons. | LV | Cons |  |
| DMM-Mil-9 |  | Telecommunication Network - Finish | milestone | 0d | 2026-12-21 | 2026-12-21 | B2.1.33 81 26.194 FF, B2.1.33 81 26.191 FF, B2.33 71 00.283 FF, B2.33 71 00.281 FF, B2.1.33 81 26.188 FF, B2.1.33 81 26.185 FF, B2.33 71 00.239, B2.1.33 81 26.119, B2.33 71 00.243 |  | 60.32d |  |  | Cons. | Telecom | Cons |  |
| DMM-Mil-48 |  | Bituminous concrete Wearing Course - Finish | milestone | 0d | 2026-12-22 | 2026-12-22 | B1.2.32 12 16.01.9 FF, B1.2.32 12 16.01.17 FF, B1.2.32 12 16.01.2 FF, B1.2.32 12 16.01.13 FF, B1.2.32 12 16.01.6 FF, B1.2.32 12 16.01.1 FF, B1.2.32 12 16.01.4 FF, B1.2.32 12 16.01.11 FF, B1.2.32 12 16.01.10 FF, B1.2.32 12 16.01.12 FF, B1.2.32 12 16.01.8 FF, B1.2.32 12 16.01.7 FF, B1.2.32 12 16.01.14 FF, B1.2.32 12 16.01.5 FF, B1.2.32 12 16.01.15 FF, B1.2.32 12 16.01.3 FF, B1.2.32 12 16.01.16 FF, B1.2.10 14 53.328 FF, 32 16 13.011 |  | 5d | 0d |  | Cons. |  | Cons |  |
| DMM-Mil-12 |  | Street Lighting Network - Finish | milestone | 0d | 2026-12-30 | 2026-12-30 | B2.33 71 26 045 FF, B2.33 71 26 034 FF, B2.33 71 26 033 FF, B2.33 71 26 032 FF, B2.33 71 26 031 FF, B2.33 71 26 03 FF, B2.33 71 19 43, B2.33 71 26 044, B2.33 71 19 31, B2.33 71 16.58 FF, B2.33 71 19 172 FF |  | 52.91d |  |  | Cons. | SL | Cons |  |
|  | Zonewise | **Zonewise Milestones** |  |  | 2026-11-10 | 2027-01-02 |  |  |  |  |  |  |  |  |  |
| DMM-Mil-13 |  | Zone 01 - Finish | milestone | 0d | 2026-11-10 | 2026-11-10 | B1.2.32 17 23.01.1 FF, 32 16 134 FF, B1.2.32 12 16.01.1 FF, B1.2.32 12 16.01.2 FF |  | 62.32d | 35.32d |  |  |  |  |  |
| DMM-Mil-15 |  | Zone 03 - Finish | milestone | 0d | 2026-12-15 | 2026-12-15 | B5.1.31 23 16.01.149 FF |  | 65.32d |  |  |  |  |  |  |
| DMM-Mil-14 |  | Zone 02 - Finish | milestone | 0d | 2026-12-31 | 2026-12-31 | B1.2.10 14 14.025 FF |  | 35d | 12d |  |  |  |  |  |
| DMM-Mil-16 |  | Zone 04 - Finish | milestone | 0d | 2027-01-02 | 2027-01-02 | B1.2.32 17 23.01.17 FF, B1.2.32 17 23.01.16 FF, B1.2.32 17 23.02.17 FF, B1.2.32 12 16.01.15 FF, B1.2.32 12 16.01.16 FF, B1.2.32 12 16.01.17 FF |  | 50.91d |  |  |  |  |  |  |

| ID | WBS | Activity | Type | Duration | Start | Finish | Predecessors | Complete | Planned start | Planned finish | Resources | DMM2 Weekly Progress | DMM2 Phases |
| --- | --- | --- | --- | --- | --- | --- | --- | --- | --- | --- | --- | --- | --- |
|  | 2 | **Mobilization** |  |  | 2025-07-30 | 2026-09-15 |  |  |  |  |  |  |  |
|  | Site | **Site Facilities and Offices** |  |  | 2025-07-30 | 2026-09-15 |  |  |  |  |  |  |  |
| DMM2-Mob-34 |  | Site Delivery |  | 1d | 2025-07-30 A | 2025-07-30 A | DMM-Mil-1 SS | 100% |  |  | Surveyor | Earth | Eng |
| DMM2-Mob-44 |  | Level of Effort (Indirect Resources) (Completed) | level of effort | 338d | 2025-07-30 A | 2026-09-15 A | DMM-Mil-1 SS | 100% |  |  | Safety Personnel; Draftsman; Document Controller; QC Engineer; Lead Engineer; Project Manager; Driver; Quantity Surveyor; Electrical Engineer; Purchaser; Procurement Officer; Storekeeper; Service Car; Nurse; Mechanical Engineer; HSE Manager | Earth | Eng |
| DMM2-Mob-010 |  | Equipment Mobilization |  | 27d | 2025-08-10 A | 2025-09-10 A | DMM2-Mob-34 | 100% | 2025-08-10 | 2025-09-09 | Operator; Low Bed Truck [16 h] | Earth | Eng |
| DMM2-Mob-08 |  | Site Access Roads Clearing & Grubbing |  | 7d | 2025-08-10 A | 2025-08-18 A | DMM2-Mob-34, DMM2-Mob-010 | 100% | 2025-08-10 | 2025-08-17 | Foreman; Operator; Loader [32 h]; Water Tanker [32 h] | Earth | Eng |
| DMM2-Mob-09 |  | Manpower Crews & Project Staff Mobilization |  | 50d | 2025-08-11 A | 2025-10-08 A | DMM2-Mob-34, DMM2-Mob-07 SS | 100% |  |  |  |  | Eng |
| DMM2-Mob-06 |  | Project Main Signboards Installation |  | 5d | 2025-08-17 A | 2025-08-23 A | DMM2-Mob-34 | 100% | 2025-08-17 | 2025-08-21 | Labor; Welder; Carpenter; Steelfixer; Operator; Manlift [24 h]; Mobile Crane [24 h]; Welding Machine [24 h] | Earth | Eng |
| DMM2-Mob-026 |  | Site Utilities, Cabins, Offices Electrical & Sanitary Wares |  | 14d | 2025-08-20 A | 2025-09-04 A | DMM2-Mob-34, DMM2-Mob-08, DMM2-Mob-07, DMM2-Mob-02, DMM2-Mob-03 | 100% |  |  | Labor; Plumber Helper; Plumber | Earth | Eng |
| DMM2-Mob-025 |  | Nurse Room Installation & Equiping |  | 15d | 2025-09-10 A | 2025-09-28 A | DMM2-Mob-34, DMM2-Mob-08 | 100% |  |  | Labor; Operator; Mobile Crane [16 h]; Low Bed Truck [16 h] | Earth | Eng |
| DMM2-Mob-04 |  | Store & Laydown Area |  | 21d | 2025-09-10 A | 2025-10-05 A | DMM2-Mob-34, DMM2-Mob-08 | 100% |  |  | Labor; Foreman; Operator; Loader [16 h]; Water Tanker [16 h] | Earth | Eng |
| DMM2-Mob-05 |  | Project Laboratory Installation & Equiping |  | 27d | 2025-09-17 A | 2025-10-19 A | DMM2-Mob-34, DMM2-Mob-08 | 100% |  |  | Labor; Laboratory Officer | Earth | Eng |
| DMM2-Mob-07 |  | Offices, Parking Slots, Gates Installation |  | 39d | 2025-09-20 A | 2025-11-04 A | DMM2-Mob-34, DMM2-Mob-08 | 100% |  |  | Labor; Welder; Operator; Mobile Crane [24 h]; Welding Machine [24 h]; Low Bed Truck [24 h] | Earth | Eng |
|  | Preliminaries | **Preliminary Works** |  |  | 2025-08-11 | 2025-11-19 |  |  |  |  |  |  |  |
|  | Soil | **Soil Investigation** |  |  | 2025-08-27 | 2025-09-22 |  |  |  |  |  |  |  |
| DMM2-Mob-011 |  | Prepare & Submit |  | 5d | 2025-08-27 A | 2025-09-01 A | DMM2-Mob-07, DMM2-Mob-09 | 100% |  |  |  |  | Eng |
| DMM2-Mob-012 |  | Review & Approval |  | 18d | 2025-09-02 A | 2025-09-22 A | DMM2-Mob-011 | 100% |  |  |  |  | Eng |
|  | Surveying | **Quality Plans** |  |  | 2025-08-26 | 2025-09-20 |  |  |  |  |  |  |  |
| DMM2-Mob-014 |  | Prepare & Submit |  | 7d | 2025-08-26 A | 2025-09-02 A | DMM2-Mob-07, DMM2-Mob-09 | 100% |  |  |  |  | Eng |
| DMM2-Mob-019 |  | Review & Approval |  | 15d | 2025-09-03 A | 2025-09-20 A | DMM2-Mob-014 | 100% |  |  |  |  | Eng |
|  | Baseline | **Baseline Schedule** |  |  | 2025-08-16 | 2025-11-19 |  |  |  |  |  |  |  |
| DMM2-Mob-015 |  | Prepare & Submit |  | 77d | 2025-08-16 A | 2025-11-13 A | DMM2-Mob-07 SS, DMM2-Mob-09 SS | 100% |  |  |  |  | Eng |
| DMM2-Mob-020 |  | Review & Approval |  | 4d | 2025-11-15 A | 2025-11-19 A | DMM2-Mob-015 | 100% | 2025-11-15 | 2025-11-18 |  |  | Eng |
|  | HSE | **HSE Plans** |  |  | 2025-08-11 | 2025-11-04 |  |  |  |  |  |  |  |
| DMM2-Mob-016 |  | Prepare & Submit |  | 12d | 2025-08-11 A | 2025-08-24 A | DMM2-Mob-07, DMM2-Mob-09 | 100% |  |  |  |  | Eng |
| DMM2-Mob-021 |  | Review & Approval |  | 24d | 2025-10-08 A | 2025-11-04 A | DMM2-Mob-016 | 100% |  |  |  |  | Eng |

| ID | WBS | Activity | Duration | Start | Finish | Predecessors | Complete | Resources | DMM2 Phases | DMM2 Weekly Progress | Networks & Stations |
| --- | --- | --- | --- | --- | --- | --- | --- | --- | --- | --- | --- |
|  | Mobilization | **Site Mobilization Plan** |  | 2025-08-11 | 2025-08-19 |  |  |  |  |  |  |
| DMM2-Mob-017 |  | Prepare & Submit | 2d | 2025-08-11 A | 2025-08-12 A | DMM2-Mob-07, DMM2-Mob-09 | 100% |  | Eng |  |  |
| DMM2-Mob-022 |  | Review & Approval | 6d | 2025-08-13 A | 2025-08-19 A | DMM2-Mob-017 | 100% |  | Eng |  |  |
|  | Organization Chart | **Organization Chart and Recruitment Plan** |  | 2025-08-13 | 2025-08-18 |  |  |  |  |  |  |
| DMM2-Mob-018 |  | Prepare & Submit | 2d | 2025-08-13 A | 2025-08-14 A | DMM2-Mob-07, DMM2-Mob-09 | 100% |  | Eng |  |  |
| DMM2-Mob-023 |  | Review & Approval | 3d | 2025-08-16 A | 2025-08-18 A | DMM2-Mob-018 | 100% |  | Eng |  |  |
|  | PMP | **Project Management Plans** |  | 2025-08-18 | 2025-09-20 |  |  |  |  |  |  |
| DMM2-Mob-013 |  | Prepare & Submit | 20d | 2025-08-18 A | 2025-09-09 A | DMM2-Mob-07, DMM2-Mob-09 | 100% |  | Eng |  |  |
| DMM2-Mob-024 |  | Review & Approval | 9d | 2025-09-10 A | 2025-09-20 A | DMM2-Mob-013 | 100% |  | Eng |  |  |
|  | Permits | **Authorities Permits & Approvals** |  | 2025-08-09 | 2025-11-06 |  |  |  |  |  |  |
| DMM2-Mob-02 |  | Electric Current Permission | 14d | 2025-08-09 A | 2025-08-24 A | DMM2-Mob-34 | 100% |  | Eng |  |  |
| DMM2-Mob-03 |  | Water & Sewer Permission | 6d | 2025-08-12 A | 2025-08-18 A | DMM2-Mob-34 | 100% |  | Eng |  |  |
| DMM2-Mob-01 |  | Dewatering Plan & Permission | 41d | 2025-09-20 A | 2025-11-06 A | DMM-Mil-38 | 100% |  | Eng |  |  |
|  | Eng | **Engineering** |  | 2025-08-11 | 2026-11-08 |  |  |  |  |  |  |
|  | SD | **Shop Drawing** |  | 2025-08-30 | 2026-01-14 |  |  |  |  |  |  |
|  | 2 | **Submittals & Approvals** |  | 2025-08-30 | 2026-01-14 |  |  |  |  |  |  |
|  | Site Grading | **Earth & Road Works** |  | 2025-09-24 | 2025-11-11 |  |  |  |  |  |  |
| DMM2-Eng-SD-01 |  | Prepare & Submit | 35d | 2025-09-24 A | 2025-11-03 A | DMM2-Mob-09, DMM2-Mob-07 | 100% | Eng.Labour [255.14 h] | Eng | Eng | Roads |
| DMM2-Eng-SD-02 |  | Review & Approval | 31d | 2025-10-07 A | 2025-11-11 A | DMM2-Eng-SD-01 | 100% | Eng.Labour [225.98 h] | Eng | Eng | Roads |
|  | Landscape | **Landscape Works** |  | 2025-10-26 | 2026-01-03 |  |  |  |  |  |  |
| DMM2-Eng-SD-03 |  | Prepare & Submit | 40.01d | 2025-10-26 A | 2025-12-11 A | DMM2-Mob-09, DMM2-Mob-07, DMM2-Eng-SD-01 SS | 100% | Eng.Labour [291.65 h] | Eng | Eng | Landscp |
| DMM2-Eng-SD-04 |  | Review & Approval | 55.18d | 2025-10-30 A | 2026-01-03 A | DMM2-Eng-SD-03 | 100% | Eng.Labour [402.27 h] | Eng | Eng | Landscp |
|  | Guard Room | **Guard Rooms** |  | 2025-10-15 | 2025-12-25 |  |  |  |  |  |  |
|  | 1 | **Civil & Architecture** |  | 2025-10-15 | 2025-11-06 |  |  |  |  |  |  |
| DMM2-Eng-SD-05 |  | Prepare & Submit | 5d | 2025-10-15 A | 2025-10-20 A | DMM2-Mob-09, DMM2-Mob-07, DMM2-Eng-SD-03 | 100% | Eng.Labour [36.45 h] | Eng | Eng | GRS |
| DMM2-Eng-SD-06 |  | Review & Approval | 15d | 2025-10-21 A | 2025-11-06 A | DMM2-Eng-SD-05 | 100% | Eng.Labour [109.35 h] | Eng | Eng | GRS |

| ID | WBS | Activity | Duration | Start | Finish | Predecessors | Complete | Resources | DMM2 Weekly Progress | Networks & Stations | DMM2 Phases | UNASCO |
| --- | --- | --- | --- | --- | --- | --- | --- | --- | --- | --- | --- | --- |
|  | 3 | **Mechanical** |  | 2025-10-25 | 2025-11-19 |  |  |  |  |  |  |  |
| DMM2-Eng-SD-28 |  | Prepare & Submit | 18d | 2025-10-25 A | 2025-11-13 A | DMM2-Mob-09, DMM2-Mob-07, DMM2-Eng-SD-05 SS | 100% | Eng.Labour [131.22 h] | Eng | GRS | Eng |  |
| DMM2-Eng-SD-38 |  | Review & Approval | 6d | 2025-11-13 A | 2025-11-19 A | DMM2-Eng-SD-28 | 100% | Eng.Labour [43.74 h] | Eng | GRS | Eng |  |
|  | 2 | **Electrical** |  | 2025-11-10 | 2025-12-25 |  |  |  |  |  |  |  |
| DMM2-Eng-SD-48 |  | Prepare & Submit | 26.96d | 2025-11-10 A | 2025-12-10 A | DMM2-Mob-09, DMM2-Mob-07, DMM2-Eng-SD-28 SS | 100% | Eng.Labour [196.54 h] | Eng | GRS | Eng |  |
| DMM2-Eng-SD-58 |  | Review & Approval | 36.44d | 2025-11-13 A | 2025-12-25 A | DMM2-Eng-SD-48 | 100% | Eng.Labour [265.65 h] | Eng | GRS | Eng |  |
|  | SDS | **Wet Networks & Stations** |  | 2025-08-30 | 2026-01-14 |  |  |  |  |  |  |  |
|  | Sewer | **Sewerage Network** |  | 2025-09-08 | 2025-10-22 |  |  |  |  |  |  |  |
| DMM2-Eng-SD-07 |  | Prepare & Submit | 35d | 2025-09-08 A | 2025-10-19 A | DMM2-Mob-09 SS, DMM2-Mob-07, DMM2-Eng-SD-48 | 100% | Eng.Labour [255.14 h] | Eng | Sew | Eng | EN.UNSC |
| DMM2-Eng-SD-08 |  | Review & Approval | 3d | 2025-10-20 A | 2025-10-22 A | DMM2-Eng-SD-07 | 100% | Eng.Labour [21.87 h] | Eng | Sew | Eng | EN.UNSC |
|  | Storm | **Storm Network** |  | 2025-08-30 | 2025-10-30 |  |  |  |  |  |  |  |
| DMM2-Eng-SD-09 |  | Prepare & Submit | 48d | 2025-08-30 A | 2025-10-25 A | DMM2-Mob-09, DMM2-Mob-07, DMM2-Eng-SD-07 | 100% | Eng.Labour [349.91 h] | Eng | Storm | Eng | EN.UNSC |
| DMM2-Eng-SD-010 |  | Review & Approval | 5d | 2025-10-26 A | 2025-10-30 A | DMM2-Eng-SD-09 | 100% | Eng.Labour [36.45 h] | Eng | Storm | Eng | EN.UNSC |
|  | Potable | **Potable Network** |  | 2025-09-16 | 2025-11-03 |  |  |  |  |  |  |  |
| DMM2-Eng-SD-011 |  | Prepare & Submit | 35d | 2025-09-16 A | 2025-10-27 A | DMM2-Mob-09, DMM2-Mob-07, DMM2-Eng-SD-09 | 100% | Eng.Labour [255.14 h] | Eng | Potable | Eng | EN.UNSC |
| DMM2-Eng-SD-012 |  | Review & Approval | 6d | 2025-10-28 A | 2025-11-03 A | DMM2-Eng-SD-011 | 100% | Eng.Labour [43.74 h] | Eng | Potable | Eng | EN.UNSC |
|  | TSE | **TSE Network** |  | 2025-10-29 | 2026-01-14 |  |  |  |  |  |  |  |
| DMM2-Eng-SD-013 |  | Prepare & Submit | 37.34d | 2025-10-29 A | 2025-12-11 A | DMM2-Mob-09, DMM2-Mob-07, DMM2-Eng-SD-011 SS | 100% | Eng.Labour [272.18 h] | Eng | TSE | Eng | EN.UNSC |
| DMM2-Eng-SD-014 |  | Review & Approval | 63d | 2025-11-03 A | 2026-01-14 A | DMM2-Eng-SD-013 | 100% | Eng.Labour [459.26 h] | Eng | TSE | Eng | EN.UNSC |
|  | Fire Fighting | **Fire Fighting Network** |  | 2025-10-11 | 2025-11-10 |  |  |  |  |  |  |  |
| DMM2-Eng-SD-015 |  | Prepare & Submit | 19d | 2025-10-11 A | 2025-11-01 A | DMM2-Mob-09, DMM2-Mob-07, DMM2-Eng-SD-013 SS | 100% | Eng.Labour [138.51 h] | Eng | Fire | Eng | EN.UNSC |
| DMM2-Eng-SD-016 |  | Review & Approval | 8d | 2025-11-02 A | 2025-11-10 A | DMM2-Eng-SD-015 | 100% | Eng.Labour [58.32 h] | Eng | Fire | Eng | EN.UNSC |
|  | Pot Pump St. | **Potable Water Pump Station** |  | 2025-10-16 | 2026-01-01 |  |  |  |  |  |  |  |
| DMM2-Eng-SD-017 |  | Prepare & Submit | 48d | 2025-10-16 A | 2025-12-10 A | DMM2-Mob-09, DMM2-Mob-07, DMM2-Eng-SD-015 | 100% | Eng.Labour [349.91 h] | Eng | Pump | Eng |  |
| DMM2-Eng-SD-018 |  | Review & Approval | 63.47d | 2025-10-20 A | 2026-01-01 A | DMM2-Eng-SD-017 | 100% | Eng.Labour [462.69 h] | Eng | Pump | Eng |  |

| ID | WBS | Activity | Duration | Start | Finish | Predecessors | Complete | Resources | DMM2 Weekly Progress | Networks & Stations | DMM2 Phases |
| --- | --- | --- | --- | --- | --- | --- | --- | --- | --- | --- | --- |
|  | Sewer Lift St. | **Sewer Lift Station** |  | 2025-11-25 | 2025-12-24 |  |  |  |  |  |  |
| DMM2-Eng-SD-019 |  | Prepare & Submit | 15d | 2025-11-25 A | 2025-12-11 A | DMM2-Mob-09, DMM2-Mob-07, DMM2-Eng-SD-017 SS | 100% | Eng.Labour [109.35 h] | Eng | Lift | Eng |
| DMM2-Eng-SD-020 |  | Review & Approval | 21.64d | 2025-11-30 A | 2025-12-24 A | DMM2-Eng-SD-019 | 100% | Eng.Labour [157.73 h] | Eng | Lift | Eng |
|  | 1 | **Dry Networks** |  | 2025-09-27 | 2025-10-20 |  |  |  |  |  |  |
|  | MV | **Medium Voltage Network** |  | 2025-09-27 | 2025-10-16 |  |  |  |  |  |  |
| DMM2-Eng-SD-021 |  | Prepare & Submit | 13d | 2025-09-27 A | 2025-10-11 A | DMM2-Mob-09, DMM2-Mob-07, DMM2-Eng-SD-019 | 100% | Eng.Labour [94.77 h] | Eng | MV | Eng |
| DMM2-Eng-SD-022 |  | Review & Approval | 5d | 2025-10-12 A | 2025-10-16 A | DMM2-Eng-SD-021 | 100% | Eng.Labour [36.45 h] | Eng | MV | Eng |
|  | LV | **Low Voltage Network** |  | 2025-10-04 | 2025-10-16 |  |  |  |  |  |  |
| DMM2-Eng-SD-023 |  | Prepare & Submit | 7d | 2025-10-04 A | 2025-10-11 A | DMM2-Mob-09, DMM2-Mob-07, DMM2-Eng-SD-021 | 100% | Eng.Labour [51.03 h] | Eng | LV | Eng |
| DMM2-Eng-SD-024 |  | Review & Approval | 5d | 2025-10-12 A | 2025-10-16 A | DMM2-Eng-SD-023 | 100% | Eng.Labour [36.45 h] | Eng | LV | Eng |
|  | Telecom | **Telecommunication Network** |  | 2025-10-02 | 2025-10-20 |  |  |  |  |  |  |
| DMM2-Eng-SD-025 |  | Prepare & Submit | 12d | 2025-10-02 A | 2025-10-15 A | DMM2-Mob-09, DMM2-Mob-07, DMM2-Eng-SD-023 SS | 100% | Eng.Labour [87.48 h] | Eng | Telecom | Eng |
| DMM2-Eng-SD-026 |  | Review & Approval | 4d | 2025-10-16 A | 2025-10-20 A | DMM2-Eng-SD-025 | 100% | Eng.Labour [29.16 h] | Eng | Telecom | Eng |
|  | SL | **Street Lighting** |  | 2025-10-01 | 2025-10-16 |  |  |  |  |  |  |
| DMM2-Eng-SD-027 |  | Prepare & Submit | 9d | 2025-10-01 A | 2025-10-11 A | DMM2-Mob-09, DMM2-Mob-07, DMM2-Eng-SD-025 | 100% | Eng.Labour [65.61 h] | Eng | SL | Eng |
| DMM2-Eng-SD-028 |  | Review & Approval | 5d | 2025-10-12 A | 2025-10-16 A | DMM2-Eng-SD-027 | 100% | Eng.Labour [36.45 h] | Eng | SL | Eng |
|  | Prequalification | **Prequalifications & Materials Submissions** |  | 2025-08-11 | 2026-11-08 |  |  |  |  |  |  |
|  | Prequal Submit | **Submittals** |  | 2025-08-31 | 2026-10-27 |  |  |  |  |  |  |
|  | Site Grading | **Earth & Road Works** |  | 2025-10-14 | 2026-01-18 |  |  |  |  |  |  |
| DMM2-Eng-PQ-02 |  | Prepare & Submit for Agg. Base Coarse | 2d | 2025-10-14 A | 2025-10-15 A | DMM2-Mob-09, DMM2-Eng-PQ-04 | 100% | Eng.Labour [14.58 h] | Eng | Roads | Eng |
| DMM2-Eng-PQ-03 |  | Prepare & Submit for Asphalt Materials | 24.75d | 2025-10-14 A | 2025-11-11 A | DMM2-Mob-09, DMM2-Eng-PQ-02 | 100% | Eng.Labour [180.42 h] | Eng | Roads | Eng |
| DMM2-Eng-PQ-04 |  | Prepare & Submit for Subgrade Materials | 29d | 2025-10-14 A | 2025-11-16 A | DMM2-Mob-09, DMM2-Eng-PQ-01 | 100% | Eng.Labour [211.4 h] | Eng | Roads | Eng |
| DMM2-Eng-PQ-01 |  | Prepare & Submit for Embankment & Backfilling Materials | 1d | 2025-10-15 A | 2025-10-15 A | DMM2-Mob-09 SS, DMM2-Eng-PQ-1918 | 100% | Eng.Labour [7.29 h] | Eng | Roads | Eng |
| DMM2-Eng-PQ-1918 |  | Prepare & Submit for Concrete Materials | 1d | 2025-10-20 A | 2025-10-20 A | DMM2-Mob-09 | 100% | Eng.Labour [7.29 h] | Eng | Roads | Eng |
| DMM2-Eng-PQ-011 |  | Prepare & Submit for Interlock Materials | 2d | 2025-11-16 A | 2025-11-17 A | DMM2-Mob-09, DMM2-Eng-PQ-05 | 100% | Eng.Labour [14.58 h] | Eng | Roads | Eng |
| DMM2-Eng-PQ-05 |  | Prepare & Submit for Curbstone Materials | 2d | 2025-12-17 A | 2025-12-18 A | DMM2-Mob-09, DMM2-Eng-PQ-03 | 100% | Eng.Labour [14.58 h] | Eng | Roads | Eng |
| DMM2-Eng-PQ-014 |  | Prepare & Submit for Traffic Signs Materials | 2d | 2025-12-31 A | 2026-01-01 A | DMM2-Mob-09 SS, DMM2-Eng-PQ-011 | 100% | Eng.Labour [14.58 h] | Eng | Roads | Eng |
| DMM2-Eng-PQ-012 |  | Prepare & Submit for Pavement Markings Materials | 2d | 2026-01-05 A | 2026-01-06 A | DMM2-Mob-09, DMM2-Eng-PQ-015 | 100% | Eng.Labour [14.58 h] | Eng | Roads | Eng |
| DMM2-Eng-PQ-013 |  | Prepare & Submit for Wheels Stopper (precast concrete) Materials | 2d | 2026-01-14 A | 2026-01-15 A | DMM2-Mob-09 SS | 100% | Eng.Labour [14.58 h] | Eng | Roads | Eng |
| DMM2-Eng-PQ-015 |  | Prepare & Submit for ground Mounted Information Signs Materials | 2d | 2026-01-17 A | 2026-01-18 A | DMM2-Mob-09, DMM2-Eng-PQ-014 | 100% | Eng.Labour [14.58 h] | Eng | Roads | Eng |

| ID | WBS | Activity | Duration | Start | Finish | Predecessors | Complete | Planned start | Planned finish | Resources | DMM2 Weekly Progress | Networks & Stations | DMM2 Phases | UNASCO |
| --- | --- | --- | --- | --- | --- | --- | --- | --- | --- | --- | --- | --- | --- | --- |
|  | SDS | **Wet Networks & Stations** |  | 2025-08-31 | 2026-10-24 |  |  |  |  |  |  |  |  |  |
|  | Storm | **Storm Network** |  | 2025-10-01 | 2025-11-20 |  |  |  |  |  |  |  |  |  |
| DMM2-Eng-PQ-064 |  | Prepare & Submit for GRP Pipes Materials | 44d | 2025-10-01 A | 2025-11-20 A | DMM2-Mob-09, DMM2-Eng-PQ-065 | 100% |  |  | Eng.Labour [320.75 h] | Eng | Storm | Eng | EN.UNSC |
| DMM2-Eng-PQ-065 |  | Prepare & Submit for Steel Reinforcement Materials | 2d | 2025-10-09 A | 2025-10-11 A | DMM2-Mob-09 | 100% |  |  | Eng.Labour [14.58 h] | Eng | Storm | Eng | EN.UNSC |
| DMM2-Eng-PQ-068 |  | Prepare & Submit for uPVC Pipes Materials | 2d | 2025-10-29 A | 2025-10-30 A | DMM2-Mob-09, DMM2-Eng-PQ-064 | 100% |  |  | Eng.Labour [14.58 h] | Eng | Storm | Eng | EN.UNSC |
| DMM2-Eng-PQ-066 |  | Prepare & Submit for Inlet Manholes Materials | 2d | 2025-11-02 A | 2025-11-03 A | DMM2-Mob-09 SS, DMM2-Eng-PQ-068 | 100% |  |  | Eng.Labour [14.58 h] | Eng | Storm | Eng | EN.UNSC |
| DMM2-Eng-PQ-067 |  | Prepare & Submit for Concrete Chambers & Catch Basin Materials | 2d | 2025-11-02 A | 2025-11-03 A | DMM2-Mob-09, DMM2-Eng-PQ-065, DMM2-Eng-PQ-066 | 100% |  |  | Eng.Labour [14.58 h] | Eng | Storm | Eng | EN.UNSC |
|  | Sewer | **Sewerage Network** |  | 2025-08-31 | 2025-11-03 |  |  |  |  |  |  |  |  |  |
| DMM2-Eng-PQ-071 |  | Prepare & Submit for Valves Materials | 2d | 2025-08-31 A | 2025-09-01 A | DMM2-Mob-09 SS, DMM2-Eng-PQ-069 | 100% |  |  | Eng.Labour [14.58 h] | Eng | Sew | Eng | EN.UNSC |
| DMM2-Eng-PQ-069 |  | Prepare & Submit for HDPE Pipes Materials | 2d | 2025-10-06 A | 2025-10-07 A | DMM2-Mob-09 SS | 100% |  |  | Eng.Labour [14.58 h] | Eng | Sew | Eng | EN.UNSC |
| DMM2-Eng-PQ-070 |  | Prepare & Submit for Valves Chambers Materials | 2d | 2025-11-02 A | 2025-11-03 A | DMM2-Mob-09, DMM2-Eng-PQ-071 | 100% |  |  | Eng.Labour [14.58 h] | Eng | Sew | Eng | EN.UNSC |
| DMM2-Eng-PQ-072 |  | Prepare & Submit for Discharge Chamber Materials | 2d | 2025-11-02 A | 2025-11-03 A | DMM2-Mob-09, DMM2-Eng-PQ-070 | 100% |  |  | Eng.Labour [14.58 h] | Eng | Sew | Eng | EN.UNSC |
|  | Potable | **Potable Network** |  | 2025-08-31 | 2025-12-13 |  |  |  |  |  |  |  |  |  |
| DMM2-Eng-PQ-077 |  | Prepare & Submit for Valves Materials | 2d | 2025-08-31 A | 2025-09-01 A | DMM2-Mob-09 SS, DMM2-Eng-PQ-076 | 100% |  |  | Eng.Labour [14.58 h] | Eng | Potable | Eng | EN.UNSC |
| DMM2-Eng-PQ-076 |  | Prepare & Submit for HDPE Pipes Materials | 2d | 2025-10-06 A | 2025-10-07 A | DMM2-Mob-09 | 100% |  |  | Eng.Labour [14.58 h] | Eng | Potable | Eng | EN.UNSC |
| DMM2-Eng-PQ-078 |  | Prepare & Submit for Valves & Flow Meter Chambers Materials | 2d | 2025-11-02 A | 2025-11-03 A | DMM2-Mob-09, DMM2-Eng-PQ-079 | 100% |  |  | Eng.Labour [14.58 h] | Eng | Potable | Eng | EN.UNSC |
| DMM2-Eng-PQ-079 |  | Prepare & Submit for Flow Meter Materials | 3d | 2025-12-10 A | 2025-12-13 A | DMM2-Mob-09, DMM2-Eng-PQ-077 | 100% |  |  | Eng.Labour [21.97 h] | Eng | Potable | Eng | EN.UNSC |
|  | TSE | **TSE Network** |  | 2025-08-31 | 2026-02-22 |  |  |  |  |  |  |  |  |  |
| DMM2-Eng-PQ-082 |  | Prepare & Submit for Valves Materials | 2d | 2025-08-31 A | 2025-09-01 A | DMM2-Mob-09, DMM2-Eng-PQ-080 | 100% |  |  | Eng.Labour [14.58 h] | Eng | TSE | Eng | EN.UNSC |
| DMM2-Eng-PQ-080 |  | Prepare & Submit for HDPE Pipes Materials | 2d | 2025-10-06 A | 2025-10-07 A | DMM2-Mob-09 SS | 100% |  |  | Eng.Labour [14.58 h] | Eng | TSE | Eng | EN.UNSC |
| DMM2-Eng-PQ-081 |  | Prepare & Submit for Solenoid Primary Control Valves Materials | 3d | 2026-02-18 A | 2026-02-22 A | DMM2-Mob-09, DMM2-Eng-PQ-082 | 100% | 2026-02-18 | 2026-02-23 | Eng.Labour [16.4 h] | Eng | TSE | Eng | EN.UNSC |
| DMM2-Eng-PQ-1648 |  | Prepare & Submit for Dripper Materials | 3d | 2026-02-18 A | 2026-02-22 A | DMM2-Mob-09, DMM2-Eng-PQ-081 | 100% | 2026-02-18 | 2026-02-23 | Eng.Labour [16.4 h] | Eng | TSE | Eng | EN.UNSC |
| DMM2-Eng-PQ-1658 |  | Prepare & Submit for Bubbler Materials | 3d | 2026-02-18 A | 2026-02-22 A | DMM2-Mob-09, DMM2-Eng-PQ-1648 | 100% | 2026-02-18 | 2026-02-23 | Eng.Labour [16.4 h] | Eng | TSE | Eng | EN.UNSC |
| DMM2-Eng-PQ-1668 |  | Prepare & Submit for Pull Box Materials | 3d | 2026-02-18 A | 2026-02-22 A | DMM2-Mob-09, DMM2-Eng-PQ-1658, DMM2-Eng-PQ-1658 FF | 100% | 2026-02-18 | 2026-02-23 | Eng.Labour [16.4 h] | Eng | TSE | Eng | EN.UNSC |
| DMM2-Eng-PQ-1678 |  | Prepare & Submit for Two wire decoder cable 12 awg Materials | 3d | 2026-02-18 A | 2026-02-22 A | DMM2-Mob-09, DMM2-Eng-PQ-1668, DMM2-Eng-PQ-1668 FF | 100% | 2026-02-18 | 2026-02-23 | Eng.Labour [16.4 h] | Eng | TSE | Eng | EN.UNSC |

| ID | WBS | Activity | Duration | Start | Finish | Predecessors | Complete | Total float | Free float | Resources | DMM2 Weekly Progress | Networks & Stations | DMM2 Phases | UNASCO | JANCO |
| --- | --- | --- | --- | --- | --- | --- | --- | --- | --- | --- | --- | --- | --- | --- | --- |
|  | Fire Fighting | **Fire Fighting Network** |  | 2025-08-31 | 2025-11-03 |  |  |  |  |  |  |  |  |  |  |
| DMM2-Eng-PQ-074 |  | Prepare & Submit for Valves Materials | 2d | 2025-08-31 A | 2025-09-01 A | DMM2-Mob-09 SS, DMM2-Eng-PQ-073 | 100% |  |  | Eng.Labour [14.58 h] | Eng | Fire | Eng | EN.UNSC |  |
| DMM2-Eng-PQ-1948 |  | Prepare & Submit for Firehydrant Materials | 2d | 2025-08-31 A | 2025-09-01 A | DMM2-Mob-09, DMM2-Eng-PQ-075 | 100% |  |  | Eng.Labour [14.58 h] | Eng | Fire | Eng | EN.UNSC |  |
| DMM2-Eng-PQ-073 |  | Prepare & Submit for HDPE Pipes Materials | 2d | 2025-10-06 A | 2025-10-07 A | DMM2-Mob-09 | 100% |  |  | Eng.Labour [14.58 h] | Eng | Fire | Eng | EN.UNSC |  |
| DMM2-Eng-PQ-075 |  | Prepare & Submit for Valves Chambers Materials | 2d | 2025-11-02 A | 2025-11-03 A | DMM2-Mob-09, DMM2-Eng-PQ-074 | 100% |  |  | Eng.Labour [14.58 h] | Eng | Fire | Eng | EN.UNSC |  |
|  | Pot Pump St. | **Potable Water Pump Station** |  | 2025-08-31 | 2026-10-24 |  |  |  |  |  |  |  |  |  |  |
|  | 1 | **Civil & Architecture** |  | 2025-11-10 | 2026-07-12 |  |  |  |  |  |  |  |  |  |  |
| DMM2-Eng-PQ-0114 |  | Prepare & Submit for CMU Walls Materials | 2d | 2025-11-10 A | 2025-11-11 A | DMM2-Mob-09 SS, DMM2-Eng-PQ-0113 | 100% |  |  | Eng.Labour [14.58 h] | Eng | Pump | Eng |  |  |
| DMM2-Eng-PQ-0118 |  | Prepare & Submit for Gravel Materials | 2d | 2025-12-31 A | 2026-01-01 A | DMM2-Mob-09 | 100% |  |  | Eng.Labour [14.58 h] | Eng | Pump | Eng |  |  |
| DMM2-Eng-PQ-0113 |  | Prepare & Submit for Stairs Materials | 3d | 2026-05-02 A | 2026-05-04 A | DMM2-Mob-09 | 100% |  |  | Eng.Labour [21.87 h] | Eng | Pump | Eng |  |  |
| DMM2-Eng-PQ-0115 |  | Prepare & Submit for Stainless Steel Ladder Materials | 3d | 2026-05-02 A | 2026-05-04 A | DMM2-Mob-09, DMM2-Eng-PQ-0114 | 100% |  |  | Eng.Labour [21.87 h] | Eng | Pump | Eng |  |  |
| DMM2-Eng-PQ-0116 |  | Prepare & Submit for Steel shutter Door Materials | 3d | 2026-05-02 A | 2026-05-04 A | DMM2-Mob-09, DMM2-Eng-PQ-0115 | 100% |  |  | Eng.Labour [21.87 h] | Eng | Pump | Eng |  |  |
| DMM2-Eng-PQ-0119 |  | Prepare & Submit for Handrail Materials | 3d | 2026-05-02 A | 2026-05-04 A | DMM2-Mob-09 | 100% |  |  | Eng.Labour [21.87 h] | Eng | Pump | Eng |  |  |
| DMM2-Eng-PQ-0117 |  | Prepare & Submit for Metal Railing Materials | 2d | 2026-07-11 A | 2026-07-12 A | DMM2-Mob-09 SS | 100% |  |  | Eng.Labour [14.58 h] | Eng | Pump | Eng |  |  |
|  | 3 | **Mechanical** |  | 2025-08-31 | 2026-10-24 |  |  |  |  |  |  |  |  |  |  |
| DMM2-Eng-PQ-0122 |  | Prepare & Submit for Butterfly Valve Materials | 2d | 2025-08-31 A | 2025-09-01 A | DMM2-Mob-09, DMM2-Eng-PQ-1958 | 100% |  |  | Eng.Labour [14.58 h] | Eng | Pump | Eng |  | PWPS |
| DMM2-Eng-PQ-1958 |  | Prepare & Submit for Valves Materials | 13d | 2025-08-31 A | 2025-09-14 A | DMM2-Mob-09, DMM2-Eng-PQ-0129 SS | 100% |  |  | Eng.Labour [94.77 h] | Eng | Pump | Eng |  | PWPS |
| DMM2-Eng-PQ-0126 |  | Prepare & Submit for FM200 Supression System Materials | 2d | 2025-09-24 A | 2025-09-25 A | DMM2-Mob-09 SS, DMM2-Mob-09 | 100% |  |  | Eng.Labour [14.58 h] | Eng | Pump | Eng |  | PWPS |
| DMM2-Eng-PQ-0120 |  | Prepare & Submit for Water Pumps Materials | 2d | 2025-10-20 A | 2025-10-21 A | DMM2-Mob-09 SS | 100% |  |  | Eng.Labour [14.58 h] | Eng | Pump | Eng |  | PWPS |
| DMM2-Eng-PQ-0121 |  | Prepare & Submit for Fire Pumps Materials | 2d | 2025-10-20 A | 2025-10-21 A | DMM2-Mob-09, DMM2-Eng-PQ-0120 | 100% |  |  | Eng.Labour [14.58 h] | Eng | Pump | Eng |  | PWPS |
| DMM2-Eng-PQ-0123 |  | Prepare & Submit for OverHead Crane Materials | 1.25d | 2025-11-19 A | 2025-11-20 A | DMM2-Mob-09, DMM2-Eng-PQ-0121 SS | 100% |  |  | Eng.Labour [9.11 h] | Eng | Pump | Eng |  | PWPS |
| DMM2-Eng-PQ-1968 |  | Prepare & Submit for Electromagnetic Flow Meters | 8d | 2025-12-11 A | 2025-12-20 A | DMM2-Mob-09, DMM2-Eng-PQ-1988 SS | 100% |  |  | Eng.Labour [58.32 h] | Eng | Pump | Eng |  | PWPS |
| DMM2-Eng-PQ-0128 |  | Prepare & Submit for Exhaust Fans Materials | 4d | 2026-01-21 A | 2026-01-25 A | DMM2-Mob-09 SS, DMM2-Eng-PQ-0122 SS | 100% |  |  | Eng.Labour [29.16 h] | Eng | Pump | Eng |  | PWPS |
| DMM2-Eng-PQ-1978 |  | Prepare & Submit for Fans Materials | 3d | 2026-01-21 A | 2026-01-24 A | DMM2-Mob-09, DMM2-Eng-PQ-0128 SS | 100% |  |  | Eng.Labour [21.87 h] | Eng | Pump | Eng |  | PWPS |
| DMM2-Eng-PQ-0129 |  | Prepare & Submit for Chlorine Cylinder Racks Materials | 1d | 2026-02-07 A | 2026-02-08 A | DMM2-Mob-09, DMM2-Eng-PQ-0130 | 100% |  |  | Eng.Labour [7.29 h] | Eng | Pump | Eng |  | PWPS |
| DMM2-Eng-PQ-0130 |  | Prepare & Submit for Chlorinators Materials | 1.5d | 2026-02-07 A | 2026-02-08 A | DMM2-Mob-09, DMM2-Eng-PQ-0123 | 100% |  |  | Eng.Labour [10.93 h] | Eng | Pump | Eng |  | PWPS |
| DMM2-Eng-PQ-0131 |  | Prepare & Submit for Discharge Line Analyzer Materials | 1.5d | 2026-02-07 A | 2026-02-08 A | DMM2-Mob-09, DMM2-Eng-PQ-0130, DMM2-Eng-PQ-0124 | 100% |  |  | Eng.Labour [10.93 h] | Eng | Pump | Eng |  | PWPS |
| DMM2-Eng-PQ-0132 |  | Prepare & Submit for Emergency shower Materials | 1.5d | 2026-02-07 A | 2026-02-08 A | DMM2-Mob-09 SS, DMM2-Eng-PQ-0133 SS | 100% |  |  | Eng.Labour [10.93 h] | Eng | Pump | Eng |  | PWPS |
| DMM2-Eng-PQ-0124 |  | Prepare & Submit for Strainers Materials | 1.42d | 2026-02-07 A | 2026-02-08 A | DMM2-Mob-09, DMM2-Eng-PQ-0123, DMM2-Eng-PQ-1978 | 100% |  |  | Eng.Labour [10.37 h] | Eng | Pump | Eng |  | PWPS |
| DMM2-Eng-PQ-0133 |  | Prepare & Submit for Trench Drain Materials | 3d | 2026-07-02 A | 2026-07-05 A | DMM2-Mob-09, DMM2-Eng-PQ-1968 | 100% |  |  | Eng.Labour [21.87 h] | Eng | Pump | Eng |  | PWPS |
| DMM2-Eng-PQ-0125 |  | Prepare & Submit for Sand Trap Louver Materials | 3d | 2026-07-06 A | 2026-07-08 A | DMM2-Mob-09, DMM2-Eng-PQ-0124 SS, DMM2-Eng-PQ-0126 | 100% |  |  | Eng.Labour [21.87 h] | Eng | Pump | Eng |  | PWPS |
| DMM2-Eng-PQ-1988 |  | Prepare & Submit for Louvers Materials | 4d | 2026-07-07 A | 2026-07-11 A | DMM2-Mob-09, DMM2-Eng-PQ-0131 | 100% |  |  | Eng.Labour [29.16 h] | Eng | Pump | Eng |  | PWPS |
| DMM2-Eng-PQ-0127 |  | Prepare & Submit for Hose Bibb Materials | 3d | 2026-10-21 | 2026-10-24 | DMM2-Mob-09, DMM2-Eng-PQ-0132 |  | 105.32d | 0d | Eng.Labour [21.87 h] | Eng | Pump | Eng |  | PWPS |

| ID | WBS | Activity | Duration | Start | Finish | Predecessors | Complete | Resources | DMM2 Weekly Progress | Networks & Stations | DMM2 Phases | JANCO |
| --- | --- | --- | --- | --- | --- | --- | --- | --- | --- | --- | --- | --- |
|  | 2 | **Electrical** |  | 2025-09-24 | 2026-02-12 |  |  |  |  |  |  |  |
| DMM2-Eng-PQ-1998 |  | Prepare & Submit for Addressable Fire Alarm System Materials | 2d | 2025-09-24 A | 2025-09-25 A | DMM2-Mob-09 | 100% | Eng.Labour [14.58 h] | Eng | Pump | Eng | PWPS |
| DMM2-Eng-PQ-0134 |  | Prepare & Submit for Switches and Circuit Breakers Materials | 2d | 2026-02-11 A | 2026-02-12 A | DMM2-Mob-09 | 100% | Eng.Labour [14.58 h] | Eng | Pump | Eng | PWPS |
|  | Sewer Lift St. | **Sewer Lift Station** |  | 2025-08-31 | 2026-08-12 |  |  |  |  |  |  |  |
|  | 1 | **Civil & Architecture** |  | 2025-12-04 | 2026-08-12 |  |  |  |  |  |  |  |
| DMM2-Eng-PQ-090 |  | Prepare & Submit for Geotextile Membrane Materials | 2d | 2025-12-04 A | 2025-12-06 A | DMM2-Mob-09 SS | 100% | Eng.Labour [14.58 h] | Eng | Lift | Eng |  |
| DMM2-Eng-PQ-084 |  | Prepare & Submit for Metal Covers Materials | 2d | 2026-01-07 A | 2026-01-08 A | DMM2-Mob-09 | 100% | Eng.Labour [14.58 h] | Eng | Lift | Eng |  |
| DMM2-Eng-PQ-083 |  | Prepare & Submit for Metal Ladders Materials | 3d | 2026-05-02 A | 2026-05-04 A | DMM2-Mob-09 SS | 100% | Eng.Labour [21.87 h] | Eng | Lift | Eng |  |
| DMM2-Eng-PQ-085 |  | Prepare & Submit for Internal Painting (Acrylic) Materials | 4d | 2026-08-03 A | 2026-08-06 A | DMM2-Mob-09 | 100% | Eng.Labour [29.16 h] | Eng | Lift | Eng |  |
| DMM2-Eng-PQ-086 |  | Prepare & Submit for Signages Materials | 4d | 2026-08-09 A | 2026-08-12 A | DMM2-Mob-09 SS | 100% | Eng.Labour [29.16 h] | Eng | Lift | Eng |  |
|  | 3 | **Mechanical** |  | 2025-08-31 | 2026-05-24 |  |  |  |  |  |  |  |
| DMM2-Eng-PQ-091 |  | Prepare & Submit for Non Return Valve (Flap) Materials | 18d | 2025-08-31 A | 2025-09-20 A | DMM2-Mob-09, DMM2-Eng-PQ-087 | 100% | Eng.Labour [131.22 h] | Eng | Lift | Eng | SLS |
| DMM2-Eng-PQ-087 |  | Prepare & Submit for Submersible Pumps Materials | 2d | 2025-10-20 A | 2025-10-21 A | DMM2-Mob-09 | 100% | Eng.Labour [14.58 h] | Eng | Lift | Eng | SLS |
| DMM2-Eng-PQ-088 |  | Prepare & Submit for Double Flanged DI Pipes Materials | 2d | 2025-10-29 A | 2025-10-30 A | DMM2-Mob-09 | 100% | Eng.Labour [14.58 h] | Eng | Lift | Eng | SLS |
| DMM2-Eng-PQ-089 |  | Prepare & Submit for Buried Flanged DI Pipes Materials | 2d | 2025-10-29 A | 2025-10-30 A | DMM2-Mob-09 SS, DMM2-Eng-PQ-088 | 100% | Eng.Labour [14.58 h] | Eng | Lift | Eng | SLS |
| DMM2-Eng-PQ-093 |  | Prepare & Submit for Odor Control Unit Materials | 2d | 2025-11-19 A | 2025-11-20 A | DMM2-Mob-09, DMM2-Eng-PQ-092 | 100% | Eng.Labour [14.58 h] | Eng | Lift | Eng | SLS |
| DMM2-Eng-PQ-095 |  | Prepare & Submit for JIB Crane Materials | 2d | 2025-11-19 A | 2025-11-20 A | DMM2-Mob-09, DMM2-Eng-PQ-094 SS | 100% | Eng.Labour [14.58 h] | Eng | Lift | Eng | SLS |
| DMM2-Eng-PQ-092 |  | Prepare & Submit for Basket Screens Materials | 31.4d | 2025-12-30 A | 2026-02-04 A | DMM2-Mob-09, DMM2-Eng-PQ-091 | 100% | Eng.Labour [228.9 h] | Eng | Lift | Eng | SLS |
| DMM2-Eng-PQ-094 |  | Prepare & Submit for Surge Tank Materials | 113d | 2025-12-31 A | 2026-05-24 A | DMM2-Mob-09 SS, DMM2-Eng-PQ-093 SS | 100% | Eng.Labour [823.74 h] | Eng | Lift | Eng | SLS |
| DMM2-Eng-PQ-096 |  | Prepare & Submit for Penstock Materials | 31d | 2025-12-31 A | 2026-02-04 A | DMM2-Mob-09, DMM2-Eng-PQ-095 | 100% | Eng.Labour [225.98 h] | Eng | Lift | Eng | SLS |
| DMM2-Eng-PQ-097 |  | Prepare & Submit for Screening Container Materials | 30.12d | 2025-12-31 A | 2026-02-04 A | DMM2-Mob-09, DMM2-Eng-PQ-096 SS | 100% | Eng.Labour [219.6 h] | Eng | Lift | Eng | SLS |
| DMM2-Eng-PQ-098 |  | Prepare & Submit for Scupper Materials | 31d | 2025-12-31 A | 2026-02-04 A | DMM2-Mob-09 SS, DMM2-Eng-PQ-097 SS | 100% | Eng.Labour [225.98 h] | Eng | Lift | Eng | SLS |
|  | 2 | **Electrical** |  | 2025-10-14 | 2026-03-18 |  |  |  |  |  |  |  |
| DMM2-Eng-PQ-0101 |  | Prepare & Submit for Low Voltage Cables Materials | 2d | 2025-10-14 A | 2025-10-15 A | DMM2-Mob-09 | 100% | Eng.Labour [14.58 h] | Eng | Lift | Eng | SLS |
| DMM2-Eng-PQ-0103 |  | Prepare & Submit for Fuel Pump Materials | 2d | 2025-10-20 A | 2025-10-21 A | DMM2-Mob-09, DMM2-Eng-PQ-0102 | 100% | Eng.Labour [14.58 h] | Eng | Lift | Eng | SLS |
| DMM2-Eng-PQ-0106 |  | Prepare & Submit for Displacement Rotary Type Pump Materials | 2d | 2025-10-20 A | 2025-10-21 A | DMM2-Mob-09 SS, DMM2-Eng-PQ-0105 | 100% | Eng.Labour [14.58 h] | Eng | Lift | Eng | SLS |
| DMM2-Eng-PQ-0102 |  | Prepare & Submit for Standby Diesel Generator Materials | 2d | 2025-10-29 A | 2025-10-30 A | DMM2-Mob-09 SS | 100% | Eng.Labour [14.58 h] | Eng | Lift | Eng | SLS |
| DMM2-Eng-PQ-0110 |  | Prepare & Submit for PLC System Materials | 2d | 2025-10-29 A | 2025-10-30 A | DMM2-Mob-09, DMM2-Eng-PQ-0106 | 100% | Eng.Labour [14.58 h] | Eng | Lift | Eng | SLS |
| DMM2-Eng-PQ-0107 |  | Prepare & Submit for Electrical Hand Holes Materials | 2d | 2025-11-02 A | 2025-11-03 A | DMM2-Mob-09 | 100% | Eng.Labour [14.58 h] | Eng | Lift | Eng | SLS |
| DMM2-Eng-PQ-0108 |  | Prepare & Submit for Galvanized Steel Pole Materials | 2d | 2025-12-13 A | 2025-12-14 A | DMM2-Mob-09 | 100% | Eng.Labour [14.58 h] | Eng | Lift | Eng | SLS |
| DMM2-Eng-PQ-0100 |  | Prepare & Submit for Local Control Panel Materials | 1d | 2025-12-15 A | 2025-12-15 A | DMM2-Mob-09 | 100% | Eng.Labour [7.29 h] | Eng | Lift | Eng | SLS |
| DMM2-Eng-PQ-0104 |  | Prepare & Submit for Automatic Transfer (Switch ATS) Materials | 1d | 2025-12-15 A | 2025-12-15 A | DMM2-Mob-09 SS, DMM2-Eng-PQ-0103 | 100% | Eng.Labour [7.29 h] | Eng | Lift | Eng | SLS |
| DMM2-Eng-PQ-099 |  | Prepare & Submit for Motor Control Center (MCC) Materials | 1d | 2025-12-15 A | 2025-12-15 A | DMM2-Mob-09 | 100% | Eng.Labour [7.29 h] | Eng | Lift | Eng | SLS |
| DMM2-Eng-PQ-0111 |  | Prepare & Submit for Process Control Wiring Materials | 2d | 2025-12-21 A | 2025-12-22 A | DMM2-Mob-09 | 100% | Eng.Labour [14.58 h] | Eng | Lift | Eng | SLS |
| DMM2-Eng-PQ-0105 |  | Prepare & Submit for Under Ground Fuel Tank Materials | 4d | 2025-12-24 A | 2025-12-28 A | DMM2-Mob-09 SS, DMM2-Eng-PQ-0104 | 100% | Eng.Labour [29.16 h] | Eng | Lift | Eng | SLS |
| DMM2-Eng-PQ-0112 |  | Prepare & Submit for Instrumentation for Process Systems Materials | 2d | 2026-01-18 A | 2026-01-19 A | DMM2-Mob-09 | 100% | Eng.Labour [14.58 h] | Eng | Lift | Eng | SLS |
| DMM2-Eng-PQ-0109 |  | Prepare & Submit for Surfaced Mounted Light (LED) Materials | 24d | 2026-02-11 A | 2026-03-18 A | DMM2-Mob-09 | 100% | Eng.Labour [174.95 h] | Eng | Lift | Eng | SLS |

| ID | WBS | Activity | Duration | Start | Finish | Predecessors | Complete | Planned start | Planned finish | Resources | DMM2 Weekly Progress | Networks & Stations | DMM2 Phases |
| --- | --- | --- | --- | --- | --- | --- | --- | --- | --- | --- | --- | --- | --- |
|  | SDS1 | **Dry Networks** |  | 2025-10-06 | 2026-02-07 |  |  |  |  |  |  |  |  |
|  | MV | **Medium Voltage Network** |  | 2025-12-20 | 2026-01-05 |  |  |  |  |  |  |  |  |
| DMM2-Eng-PQ-0135 |  | Prepare & Submit for MV Cables Materials | 7d | 2025-12-20 A | 2025-12-27 A | DMM2-Mob-09 SS, DMM2-Eng-PQ-0112 | 100% |  |  | Eng.Labour [51.03 h] | Eng | MV | Eng |
| DMM2-Eng-PQ-0136 |  | Prepare & Submit for Straight Joints, Termination Materials | 3d | 2025-12-20 A | 2025-12-22 A | DMM2-Mob-09 | 100% |  |  | Eng.Labour [21.87 h] | Eng | MV | Eng |
| DMM2-Eng-PQ-0137 |  | Prepare & Submit for Unit Substation Materials | 1d | 2026-01-02 A | 2026-01-03 A | DMM2-Mob-09 SS | 100% | 2026-01-03 | 2026-01-03 | Eng.Labour [7.29 h] | Eng | MV | Eng |
| DMM2-Eng-PQ-0138 |  | Prepare & Submit for RMU Materials | 3d | 2026-01-03 A | 2026-01-05 A | DMM2-Mob-09 | 100% |  |  | Eng.Labour [21.87 h] | Eng | MV | Eng |
|  | LV | **Low Voltage Network** |  | 2025-10-14 | 2026-01-15 |  |  |  |  |  |  |  |  |
| DMM2-Eng-PQ-0139 |  | Prepare & Submit for LV Cables Materials | 2d | 2025-10-14 A | 2025-10-15 A | DMM2-Mob-09 | 100% |  |  | Eng.Labour [14.58 h] | Eng | LV | Eng |
| DMM2-Eng-PQ-0140 |  | Prepare & Submit for LV Pillars Materials | 1d | 2026-01-15 A | 2026-01-15 A | DMM2-Mob-09 | 100% |  |  | Eng.Labour [7.29 h] | Eng | LV | Eng |
| DMM2-Eng-PQ-1999 |  | Prepare & Submit for LV Panels Materials | 1d | 2026-01-15 A | 2026-01-15 A | DMM2-Eng-PQ-0139 | 100% |  |  | Eng.Labour [7.29 h] | Eng | LV | Eng |
|  | Telecom | **Telecommunication Network** |  | 2025-10-06 | 2025-11-03 |  |  |  |  |  |  |  |  |
| DMM2-Eng-PQ-0147 |  | Prepare & Submit for HDPE Ducts Materials | 2d | 2025-10-06 A | 2025-10-07 A | DMM2-Mob-09 | 100% |  |  | Eng.Labour [14.58 h] | Eng | Telecom | Eng |
| DMM2-Eng-PQ-0148 |  | Prepare & Submit for Manholes Type 1&2 Materials | 2d | 2025-11-02 A | 2025-11-03 A | DMM2-Mob-09 SS | 100% |  |  | Eng.Labour [14.58 h] | Eng | Telecom | Eng |
|  | SL | **Street Lighting** |  | 2025-11-02 | 2026-02-07 |  |  |  |  |  |  |  |  |
| DMM2-Eng-PQ-0146 |  | Prepare & Submit for SL Drawpits Materials | 2d | 2025-11-02 A | 2025-11-03 A | DMM2-Mob-09 SS, DMM2-Eng-PQ-0145 | 100% |  |  | Eng.Labour [14.58 h] | Eng | SL | Eng |
| DMM2-Eng-PQ-0142 |  | Prepare & Submit for SL Cables Materials | 3d | 2025-12-20 A | 2025-12-22 A | DMM2-Mob-09 SS, DMM2-Eng-PQ-0141 | 100% |  |  | Eng.Labour [21.87 h] | Eng | SL | Eng |
| DMM2-Eng-PQ-0143 |  | Prepare & Submit for SL Poles Materials | 2d | 2025-12-24 A | 2025-12-25 A | DMM2-Mob-09, DMM2-Eng-PQ-0142 | 100% |  |  | Eng.Labour [14.58 h] | Eng | SL | Eng |
| DMM2-Eng-PQ-0144 |  | Prepare & Submit for SL Luminares Materials | 2d | 2025-12-24 A | 2025-12-25 A | DMM2-Mob-09, DMM2-Eng-PQ-0143 SS | 100% |  |  | Eng.Labour [14.58 h] | Eng | SL | Eng |
| DMM2-Eng-PQ-0141 |  | Prepare & Submit for SL Pillars Materials | 1d | 2026-01-15 A | 2026-01-15 A | DMM2-Mob-09 | 100% |  |  | Eng.Labour [7.29 h] | Eng | SL | Eng |
| DMM2-Eng-PQ-0145 |  | Prepare & Submit for SL Earthing Materials | 4d | 2026-02-03 A | 2026-02-07 A | DMM2-Mob-09, DMM2-Eng-PQ-0144 | 100% |  |  | Eng.Labour [29.16 h] | Eng | SL | Eng |
|  | Landscape | **Landscape Works** |  | 2025-11-09 | 2026-05-19 |  |  |  |  |  |  |  |  |
| DMM2-Eng-PQ-018 |  | Prepare & Submit for Fences (ZATCA HCIS) Materials | 2d | 2025-11-09 A | 2025-11-10 A | DMM2-Mob-09, DMM2-Eng-PQ-017 | 100% |  |  | Eng.Labour [14.58 h] | Eng | Landscp | Eng |
| DMM2-Eng-PQ-08 |  | Prepare & Submit for Geotextile Layers Materials | 2d | 2025-12-04 A | 2025-12-06 A | DMM2-Mob-09, DMM2-Eng-PQ-07 | 100% |  |  | Eng.Labour [14.58 h] | Eng | Landscp | Eng |
| DMM2-Eng-PQ-019 |  | Prepare & Submit for Fences (MODON) Materials | 3d | 2025-12-10 A | 2025-12-13 A | DMM2-Mob-09 SS, DMM2-Eng-PQ-018 SS | 100% |  |  | Eng.Labour [21.87 h] | Eng | Landscp | Eng |
| DMM2-Eng-PQ-017 |  | Prepare & Submit for Gravel/Stone Mulch Materials | 4d | 2025-12-17 A | 2025-12-21 A | DMM2-Mob-09 SS, DMM2-Eng-PQ-016 | 100% |  |  | Eng.Labour [29.16 h] | Eng | Landscp | Eng |
| DMM2-Eng-PQ-06 |  | Prepare & Submit for Trees Materials | 35d | 2025-12-31 A | 2026-02-09 A | DMM2-Mob-09 | 100% |  |  | Eng.Labour [255.14 h] | Eng | Landscp | Eng |
| DMM2-Eng-PQ-07 |  | Prepare & Submit for Ornamental Grasses Materials | 34.25d | 2025-12-31 A | 2026-02-09 A | DMM2-Mob-09, DMM2-Eng-PQ-06 SS | 100% |  |  | Eng.Labour [249.67 h] | Eng | Landscp | Eng |
| DMM2-Eng-PQ-09 |  | Prepare & Submit for Plastic edge Materials | 34.88d | 2025-12-31 A | 2026-02-09 A | DMM2-Mob-09, DMM2-Eng-PQ-08 | 100% |  |  | Eng.Labour [254.23 h] | Eng | Landscp | Eng |
| DMM2-Eng-PQ-016 |  | Prepare & Submit for Plants Materials | 32.62d | 2026-01-03 A | 2026-02-09 A | DMM2-Mob-09, DMM2-Eng-PQ-010 SS | 100% |  |  | Eng.Labour [237.83 h] | Eng | Landscp | Eng |
| DMM2-Eng-PQ-010 |  | Prepare & Submit for Large Shrubs Materials | 31.88d | 2026-01-04 A | 2026-02-09 A | DMM2-Mob-09 SS, DMM2-Eng-PQ-09 | 100% |  |  | Eng.Labour [232.36 h] | Eng | Landscp | Eng |
| DMM2-Eng-PQ-020 |  | Prepare & Submit for Vehicle Steel Gate Materials | 7d | 2026-05-12 A | 2026-05-19 A | DMM2-Mob-09 SS, DMM2-Eng-PQ-019 | 100% |  |  | Eng.Labour [51.03 h] | Eng | Landscp | Eng |
| DMM2-Eng-PQ-021 |  | Prepare & Submit for Vehicle and Pedestrian Steel Gate Materials | 7d | 2026-05-12 A | 2026-05-19 A | DMM2-Mob-09, DMM2-Eng-PQ-020 | 100% |  |  | Eng.Labour [51.03 h] | Eng | Landscp | Eng |

| ID | WBS | Activity | Duration | Start | Finish | Predecessors | Complete | Planned start | Planned finish | Total float | Free float | Resources | DMM2 Weekly Progress | Networks & Stations | DMM2 Phases |
| --- | --- | --- | --- | --- | --- | --- | --- | --- | --- | --- | --- | --- | --- | --- | --- |
|  | Guard Room | **Guard Rooms** |  | 2025-10-14 | 2026-10-27 |  |  |  |  |  |  |  |  |  |  |
|  | GR MAT Civil | **Civil & Architecture** |  | 2025-10-19 | 2026-08-13 |  |  |  |  |  |  |  |  |  |  |
| DMM2-Eng-PQ-022 |  | Prepare & Submit for Lean Concrete Materials | 2d | 2025-10-19 A | 2025-10-20 A | DMM2-Mob-09 | 100% |  |  |  |  | Eng.Labour [14.58 h] | Eng | GRS | Eng |
| DMM2-Eng-PQ-024 |  | Prepare & Submit for Screed Concrete Materials | 2d | 2025-10-19 A | 2025-10-20 A | DMM2-Mob-09, DMM2-Eng-PQ-023 | 100% |  |  |  |  | Eng.Labour [14.58 h] | Eng | GRS | Eng |
| DMM2-Eng-PQ-025 |  | Prepare & Submit for Foam Concrete Materials | 2d | 2025-10-19 A | 2025-10-20 A | DMM2-Mob-09, DMM2-Eng-PQ-024 | 100% |  |  |  |  | Eng.Labour [14.58 h] | Eng | GRS | Eng |
| DMM2-Eng-PQ-026 |  | Prepare & Submit for Reinforced Concrete Materials | 2d | 2025-10-19 A | 2025-10-20 A | DMM2-Mob-09, DMM2-Eng-PQ-025 SS | 100% |  |  |  |  | Eng.Labour [14.58 h] | Eng | GRS | Eng |
| DMM2-Eng-PQ-031 |  | Prepare & Submit for Concrete Masonry Materials | 3d | 2025-11-09 A | 2025-11-11 A | DMM2-Mob-09, DMM2-Eng-PQ-029 | 100% |  |  |  |  | Eng.Labour [21.87 h] | Eng | GRS | Eng |
| DMM2-Eng-PQ-027 |  | Prepare & Submit for Vapor Retarders Materials | 4d | 2025-12-06 A | 2025-12-09 A | DMM2-Mob-09, DMM2-Eng-PQ-026 | 100% |  |  |  |  | Eng.Labour [29.16 h] | Eng | GRS | Eng |
| DMM2-Eng-PQ-028 |  | Prepare & Submit for Board Insulation Materials | 4d | 2025-12-06 A | 2025-12-09 A | DMM2-Mob-09 SS | 100% |  |  |  |  | Eng.Labour [29.16 h] | Eng | GRS | Eng |
| DMM2-Eng-PQ-023 |  | Prepare & Submit for Stone Coping Materials | 2d | 2025-12-17 A | 2025-12-18 A | DMM2-Mob-09, DMM2-Eng-PQ-022 | 100% |  |  |  |  | Eng.Labour [14.58 h] | Eng | GRS | Eng |
| DMM2-Eng-PQ-030 |  | Prepare & Submit for Water proofing Membrane Materials | 2d | 2025-12-17 A | 2025-12-18 A | DMM2-Mob-09 SS | 100% |  |  |  |  | Eng.Labour [14.58 h] | Eng | GRS | Eng |
| DMM2-Eng-PQ-029 |  | Prepare & Submit for Fluid-Applied Water Proofing Paint Materials | 2d | 2026-03-04 A | 2026-03-07 A | DMM2-Mob-09, DMM2-Eng-PQ-027 | 100% |  |  |  |  | Eng.Labour [14.58 h] | Eng | GRS | Eng |
| DMM2-Eng-PQ-036 |  | Prepare & Submit for Steel Doors Materials | 1d | 2026-04-10 A | 2026-04-11 A | DMM2-Mob-09 SS | 100% | 2026-04-11 | 2026-04-11 |  |  | Eng.Labour [7.29 h] | Eng | GRS | Eng |
| DMM2-Eng-PQ-032 |  | Prepare & Submit for Porcelain Flooring Tiles Materials | 2d | 2026-05-10 A | 2026-05-11 A | DMM2-Mob-09, DMM2-Eng-PQ-031 | 100% |  |  |  |  | Eng.Labour [14.58 h] | Eng | GRS | Eng |
| DMM2-Eng-PQ-034 |  | Prepare & Submit for Painting Materials | 2d | 2026-05-13 A | 2026-05-14 A | DMM2-Mob-09, DMM2-Eng-PQ-033 SS | 100% |  |  |  |  | Eng.Labour [14.58 h] | Eng | GRS | Eng |
| DMM2-Eng-PQ-037 |  | Prepare & Submit for Wood Doors Materials | 2d | 2026-05-17 A | 2026-05-18 A | DMM2-Mob-09, DMM2-Eng-PQ-035 | 100% |  |  |  |  | Eng.Labour [14.58 h] | Eng | GRS | Eng |
| DMM2-Eng-PQ-038 |  | Prepare & Submit for Aluminum Windows Materials | 2d | 2026-05-20 A | 2026-05-21 A | DMM2-Mob-09, DMM2-Eng-PQ-037 | 100% |  |  |  |  | Eng.Labour [14.58 h] | Eng | GRS | Eng |
| DMM2-Eng-PQ-035 |  | Prepare & Submit for Raised Floor System Materials | 3d | 2026-08-08 A | 2026-08-10 A | DMM2-Mob-09, DMM2-Eng-PQ-034 | 100% |  |  |  |  | Eng.Labour [21.87 h] | Eng | GRS | Eng |
| DMM2-Eng-PQ-033 |  | Prepare & Submit for gypsum Board Suspended Ceiling Materials | 2d | 2026-08-12 A | 2026-08-13 A | DMM2-Mob-09, DMM2-Eng-PQ-032 | 100% |  |  |  |  | Eng.Labour [14.58 h] | Eng | GRS | Eng |
|  | GR MAT Mech | **Mechanical** |  | 2025-10-25 | 2026-10-27 |  |  |  |  |  |  |  |  |  |  |
| DMM2-Eng-PQ-042 |  | Prepare & Submit for DX Wall Mounted Split/AC Materials | 6d | 2025-10-25 A | 2025-10-30 A | DMM2-Mob-09 | 100% |  |  |  |  | Eng.Labour [43.74 h] | Eng | GRS | Eng |
| DMM2-Eng-PQ-040 |  | Prepare & Submit for uPVC Pipes Materials | 2d | 2025-10-29 A | 2025-10-30 A | DMM2-Mob-09 SS | 100% |  |  |  |  | Eng.Labour [14.58 h] | Eng | GRS | Eng |
| DMM2-Eng-PQ-045 |  | Prepare & Submit for Floor Drain Materials | 2d | 2025-11-02 A | 2025-11-03 A | DMM2-Mob-09 | 100% |  |  |  |  | Eng.Labour [14.58 h] | Eng | GRS | Eng |
| DMM2-Eng-PQ-047 |  | Prepare & Submit for Manhole Materials | 2d | 2025-11-02 A | 2025-11-03 A | DMM2-Mob-09, DMM2-Eng-PQ-043 | 100% |  |  |  |  | Eng.Labour [14.58 h] | Eng | GRS | Eng |
| DMM2-Eng-PQ-051 |  | Prepare & Submit for Fire Extinguishers (CO2 & Powder) Materials | 2d | 2025-11-30 A | 2025-12-01 A | DMM2-Mob-09 | 100% |  |  |  |  | Eng.Labour [14.58 h] | Eng | GRS | Eng |
| DMM2-Eng-PQ-039 |  | Prepare & Submit for Exhaust Axial Fans Materials | 4d | 2026-05-14 A | 2026-05-18 A | DMM2-Mob-09 | 100% |  |  |  |  | Eng.Labour [29.16 h] | Eng | GRS | Eng |
| DMM2-Eng-PQ-043 |  | Prepare & Submit for Scupper Materials | 3d | 2026-07-28 A | 2026-07-30 A | DMM2-Mob-09, DMM2-Eng-PQ-042 | 100% |  |  |  |  | Eng.Labour [21.87 h] | Eng | GRS | Eng |
| DMM2-Eng-PQ-041 |  | Prepare & Submit for PPR Pipes Materials | 2d | 2026-10-21 | 2026-10-22 | DMM2-Mob-09, DMM2-Eng-PQ-039 |  |  |  | 103.32d | 0d | Eng.Labour [14.58 h] | Eng | GRS | Eng |
| DMM2-Eng-PQ-044 |  | Prepare & Submit for Clean out Materials | 2d | 2026-10-21 | 2026-10-22 | DMM2-Mob-09, DMM2-Eng-PQ-043 |  |  |  | 95.32d | 0d | Eng.Labour [14.58 h] | Eng | GRS | Eng |
| DMM2-Eng-PQ-046 |  | Prepare & Submit for Electrical Water Heater Materials | 2d | 2026-10-21 | 2026-10-22 | DMM2-Mob-09, DMM2-Eng-PQ-045 |  |  |  | 103.32d | 8d | Eng.Labour [14.58 h] | Eng | GRS | Eng |
| DMM2-Eng-PQ-048 |  | Prepare & Submit for Shower Materials | 2d | 2026-10-21 | 2026-10-22 | DMM2-Mob-09, DMM2-Eng-PQ-047 |  |  |  | 99.32d | 0d | Eng.Labour [14.58 h] | Eng | GRS | Eng |
| DMM2-Eng-PQ-049 |  | Prepare & Submit for Toilet Materials | 2d | 2026-10-24 | 2026-10-25 | DMM2-Mob-09, DMM2-Eng-PQ-048 |  |  |  | 99.32d | 0d | Eng.Labour [14.58 h] | Eng | GRS | Eng |
| DMM2-Eng-PQ-050 |  | Prepare & Submit for Semi Pedestal Sink Materials | 2d | 2026-10-26 | 2026-10-27 | DMM2-Mob-09, DMM2-Eng-PQ-049 |  |  |  | 99.32d | 0d | Eng.Labour [14.58 h] | Eng | GRS | Eng |

| ID | WBS | Activity | Duration | Start | Finish | Predecessors | Complete | Total float | Free float | Resources | DMM2 Weekly Progress | Networks & Stations | DMM2 Phases |
| --- | --- | --- | --- | --- | --- | --- | --- | --- | --- | --- | --- | --- | --- |
|  | GR MAT Elec | **Electrical** |  | 2025-10-14 | 2026-10-22 |  |  |  |  |  |  |  |  |
| DMM2-Eng-PQ-053 |  | Prepare & Submit for Low Voltage Cable Materials | 2d | 2025-10-14 A | 2025-10-15 A | DMM2-Mob-09 | 100% |  |  | Eng.Labour [14.58 h] | Eng | GRS | Eng |
| DMM2-Eng-PQ-056 |  | Prepare & Submit for Ground Wires, Rods, Pits, Clamping Materials | 2d | 2025-10-14 A | 2025-10-15 A | DMM2-Mob-09, DMM2-Eng-PQ-055 | 100% |  |  | Eng.Labour [14.58 h] | Eng | GRS | Eng |
| DMM2-Eng-PQ-058 |  | Prepare & Submit for Fire Alarm System Materials | 10d | 2025-12-24 A | 2026-01-04 A | DMM2-Mob-09 | 100% |  |  | Eng.Labour [72.9 h] | Eng | GRS | Eng |
| DMM2-Eng-PQ-054 |  | Prepare & Submit for Lighting Materials | 2d | 2026-01-07 A | 2026-01-08 A | DMM2-Mob-09 | 100% |  |  | Eng.Labour [14.58 h] | Eng | GRS | Eng |
| DMM2-Eng-PQ-057 |  | Prepare & Submit for Enclosed Switches and Circuit Breakers Materials | 2d | 2026-01-07 A | 2026-01-08 A | DMM2-Mob-09, DMM2-Eng-PQ-056 | 100% |  |  | Eng.Labour [14.58 h] | Eng | GRS | Eng |
| DMM2-Eng-PQ-052 |  | Prepare & Submit for Panelboards Materials | 4.26d | 2026-02-05 A | 2026-02-10 A | DMM2-Mob-09 | 100% |  |  | Eng.Labour [31.07 h] | Eng | GRS | Eng |
| DMM2-Eng-PQ-055 |  | Prepare & Submit for Wiring Devices Materials | 2d | 2026-02-08 A | 2026-02-09 A | DMM2-Mob-09, DMM2-Eng-PQ-054 | 100% |  |  | Eng.Labour [14.58 h] | Eng | GRS | Eng |
| DMM2-Eng-PQ-060 |  | Prepare & Submit for Data Cabinet Materials | 5d | 2026-05-03 A | 2026-05-07 A | DMM2-Mob-09 SS | 100% |  |  | Eng.Labour [36.45 h] | Eng | GRS | Eng |
| DMM2-Eng-PQ-059 |  | Prepare & Submit for Data and Voice System Materials | 19d | 2026-05-17 A | 2026-06-11 A | DMM2-Mob-09 | 100% |  |  | Eng.Labour [138.51 h] | Eng | GRS | Eng |
| DMM2-Eng-PQ-061 |  | Prepare & Submit for Data/ Voice RJ45 Outlet Materials | 3d | 2026-05-17 A | 2026-05-19 A | DMM2-Mob-09 | 100% |  |  | Eng.Labour [21.87 h] | Eng | GRS | Eng |
| DMM2-Eng-PQ-062 |  | Prepare & Submit for PC Workstation Materials | 2d | 2026-10-21 | 2026-10-22 | DMM2-Mob-09 |  | 103.32d | 0d | Eng.Labour [14.58 h] | Eng | GRS | Eng |
| DMM2-Eng-PQ-063 |  | Prepare & Submit for 50 inch Screen Materials | 2d | 2026-10-21 | 2026-10-22 | DMM2-Mob-09 |  | 103.32d | 0d | Eng.Labour [14.58 h] | Eng | GRS | Eng |
|  | Approvals | **Approvals** |  | 2025-08-11 | 2026-11-08 |  |  |  |  |  |  |  |  |
|  | Site Grading | **Earth & Road Works** |  | 2025-10-15 | 2026-07-29 |  |  |  |  |  |  |  |  |
| DMM2-Eng-PQ-148 |  | Review & Approval for Embankment & Backfilling Materials | 2d | 2025-10-15 A | 2025-10-16 A | DMM2-Eng-PQ-01 | 100% |  |  | Eng.Labour [14.58 h] | Eng | Roads | Eng |
| DMM2-Eng-PQ-158 |  | Review & Approval for Agg. Base Coarse | 2d | 2025-10-15 A | 2025-10-16 A | DMM2-Eng-PQ-02 | 100% |  |  | Eng.Labour [14.58 h] | Eng | Roads | Eng |
| DMM2-Eng-PQ-168 |  | Review & Approval for Asphalt Materials | 2d | 2025-10-15 A | 2025-10-16 A | DMM2-Eng-PQ-03 | 100% |  |  | Eng.Labour [14.58 h] | Eng | Roads | Eng |
| DMM2-Eng-PQ-178 |  | Review & Approval for Subgrade Materials | 2d | 2025-10-15 A | 2025-10-16 A | DMM2-Eng-PQ-04 | 100% |  |  | Eng.Labour [14.58 h] | Eng | Roads | Eng |
| DMM2-Eng-PQ-1928 |  | Review & Approval for Concrete Materials | 2d | 2025-10-20 A | 2025-10-21 A | DMM2-Eng-PQ-1918 | 100% |  |  | Eng.Labour [14.58 h] | Eng | Roads | Eng |
| DMM2-Eng-PQ-198 |  | Review & Approval for Interlock Materials | 2d | 2025-11-17 A | 2025-11-18 A | DMM2-Eng-PQ-011, DMM2-Eng-PQ-188 | 100% |  |  | Eng.Labour [14.58 h] | Eng | Roads | Eng |
| DMM2-Eng-PQ-188 |  | Review & Approval for Curbstone Materials | 2d | 2026-01-07 A | 2026-01-08 A | DMM2-Eng-PQ-05 | 100% |  |  | Eng.Labour [14.58 h] | Eng | Roads | Eng |
| DMM2-Eng-PQ-218 |  | Review & Approval for Wheels Stopper (precast concrete) Materials | 4.27d | 2026-01-31 A | 2026-02-04 A | DMM2-Eng-PQ-013 | 100% |  |  | Eng.Labour [31.12 h] | Eng | Roads | Eng |
| DMM2-Eng-PQ-228 |  | Review & Approval for Traffic Signs Materials | 4d | 2026-07-15 A | 2026-07-19 A | DMM2-Eng-PQ-014 | 100% |  |  | Eng.Labour [29.16 h] | Eng | Roads | Eng |
| DMM2-Eng-PQ-238 |  | Review & Approval for Ground Mounted Information Signs Materials | 5d | 2026-07-25 A | 2026-07-29 A | DMM2-Eng-PQ-015, DMM2-Eng-PQ-208 | 100% |  |  | Eng.Labour [36.45 h] | Eng | Roads | Eng |
| DMM2-Eng-PQ-208 |  | Review & Approval for Pavement Markings Materials | 3d | 2026-07-26 A | 2026-07-28 A | DMM2-Eng-PQ-012, DMM2-Eng-PQ-198 | 100% |  |  | Eng.Labour [21.87 h] | Eng | Roads | Eng |

| ID | WBS | Activity | Duration | Start | Finish | Predecessors | Complete | Resources | Weight % | DMM2 Weekly Progress | Networks & Stations | DMM2 Phases | UNASCO | Subcontractors works |
| --- | --- | --- | --- | --- | --- | --- | --- | --- | --- | --- | --- | --- | --- | --- |
|  | SDS | **Wet Networks & Stations** |  | 2025-08-11 | 2026-10-27 |  |  |  |  |  |  |  |  |  |
|  | Storm | **Storm Network** |  | 2025-10-05 | 2025-11-15 |  |  |  |  |  |  |  |  |  |
| DMM2-Eng-PQ-248 |  | Review & Approval for GRP Pipes Materials | 2d | 2025-10-05 A | 2025-10-06 A | DMM2-Eng-PQ-064 | 100% | Eng.Labour [14.58 h]; Depth less than 1.5; Depth: 1.51m - 2.5m; less than 1.5; 1.51m - 2.5m; 2.51m - 3.5m; 3.51m - 4.5m | 0.167874349711859 | Eng | Storm | Eng | EN.UNSC | SUB.C |
| DMM2-Eng-PQ-288 |  | Review & Approval for uPVC Pipes Materials | 2d | 2025-11-04 A | 2025-11-05 A | DMM2-Eng-PQ-068 | 100% | Eng.Labour [14.58 h] |  | Eng | Storm | Eng | EN.UNSC |  |
| DMM2-Eng-PQ-268 |  | Review & Approval for Inlet Manholes Materials | 2d | 2025-11-11 A | 2025-11-12 A | DMM2-Eng-PQ-066 | 100% | Eng.Labour [14.58 h]; MH depth 1.50 - 2.5m; MH depth 2.51 - 3.5m; MH depth 3.51 - 4.5m; Storm MH depth 1.50 - 2.5m; Storm MH depth 2.51 - 3.5m; Storm MH depth 3.51 -4.5m; MH depth 4.51 -5.5m | 0.036754587677338 | Eng | Storm | Eng | EN.UNSC | SUB.C |
| DMM2-Eng-PQ-278 |  | Review & Approval for Concrete Chambers & Catch Basin Materials | 2d | 2025-11-11 A | 2025-11-12 A | DMM2-Eng-PQ-067 | 100% | Eng.Labour [14.58 h]; Size 3.0 x 3.0 m, depth 1.51-2.5 m; Size 3.0 x 1.5 m, depth 1.51-2.5 m; Size 2.5 x 1.5 m, depth 1.51-2.5 m; Size 2.0 x 1.5 m, depth 2.51-3.5 m; Size 1.5 x 1.5 m, depth 2.51-3.5 m; Size 1.5 x 1.5 m, depth 3.51-4.5 m; Single Catch basin; Double Catch basin | 0.0310203197531097 | Eng | Storm | Eng | EN.UNSC | SUB.C |
| DMM2-Eng-PQ-258 |  | Review & Approval for Steel Reinforcement Materials | 2d | 2025-11-13 A | 2025-11-15 A | DMM2-Eng-PQ-065 | 100% | Eng.Labour [14.58 h] |  | Eng | Storm | Eng | EN.UNSC |  |
|  | Sewer | **Sewerage Network** |  | 2025-09-06 | 2025-11-12 |  |  |  |  |  |  |  |  |  |
| DMM2-Eng-PQ-318 |  | Review & Approval for Valves Materials | 2d | 2025-09-06 A | 2025-09-07 A | DMM2-Eng-PQ-071 | 100% | Eng.Labour [14.58 h]; Gate V dia 150 mm on Dia. 160 mm; Wash out valve with dia (100 ) mm on pipes with dia (160) mm; Air V with dia (50) mm on pipes with dia(160 ) mm. | 0.000427597913565842 | Eng | Sew | Eng | EN.UNSC | SUB.C |
| DMM2-Eng-PQ-1628 |  | Review & Approval for GRP Pipes Materials | 2d | 2025-10-05 A | 2025-10-06 A | DMM2-Eng-PQ-064, DMM2-Eng-PQ-328 | 100% | Eng.Labour [14.58 h]; Sew Dia. 150mm Depth: 0.0m - 1.5m; Sew Dia. 150mm Depth: 1.51m - 2.5m; Sew Dia. 150mm Depth: 2.51m - 3.5m; Sew Dia. 200mm Depth: 0.0m - 1.5m; Sew Dia. 200mm Depth: 1.51m - 2.5m; Sew Dia. 200mm Depth: 2.51m - 3.5m; Sew Dia. 200mm Depth: 3.51m - 4.5m; Sew Dia. 200mm Depth: 4.51m -5.5m | 0.0396496669115712 | Eng | Sew | Eng | EN.UNSC | SUB.C |
| DMM2-Eng-PQ-298 |  | Review & Approval for HDPE Pipes Materials | 2d | 2025-10-11 A | 2025-10-12 A | DMM2-Eng-PQ-069 | 100% | Eng.Labour [14.58 h]; Sew HDPE Dia. 160 mm depth: 0- 1.5m; Sew HDPE Dia. 160 mm depth: 1.5 - 2.5m | 0.00272566408815807 | Eng | Sew | Eng | EN.UNSC | SUB.C |
| DMM2-Eng-PQ-1638 |  | Review & Approval for Inlet Manholes Materials | 2d | 2025-11-11 A | 2025-11-12 A | DMM2-Eng-PQ-066, DMM2-Eng-PQ-318 | 100% | Eng.Labour [14.58 h]; MH depth 0 - 1.5m; MH depth 1.51 - 2.5m; MH depth 2.51 - 3.5m; MH depth 2.51- 3.5 m with back drop; MH depth 3.51 -4.5m; MH depth 3.51- 4.5 m with back drop; MH depth 4.51 -5.5m; MH depth 4.51-5.5 m with back drop; MH depth 6.0-5.51 m; MH depth 6.0- 5.51 m with back drop | 0.039241705340572 | Eng | Sew | Eng | EN.UNSC | SUB.C |
| DMM2-Eng-PQ-308 |  | Review & Approval for Valves Chambers Materials | 2d | 2025-11-11 A | 2025-11-12 A | DMM2-Eng-PQ-070 | 100% | Eng.Labour [14.58 h]; Wash out chamber; on 160 mm dia pipeline; Air valve chamber; on 160 mm dia pipeline | 0.00062182456572658 | Eng | Sew | Eng | EN.UNSC | SUB.C |
| DMM2-Eng-PQ-328 |  | Review & Approval for Discharge Chamber Materials | 2d | 2025-11-11 A | 2025-11-12 A | DMM2-Eng-PQ-072, DMM2-Eng-PQ-1638 | 100% | Eng.Labour [14.58 h]; Sew. Discharge chamber, size 1500*2000 mm approximately | 0.000243369232191353 | Eng | Sew | Eng | EN.UNSC | SUB.C |
|  | Potable | **Potable Network** |  | 2025-09-06 | 2025-12-25 |  |  |  |  |  |  |  |  |  |
| DMM2-Eng-PQ-348 |  | Review & Approval for Valves Materials | 2d | 2025-09-06 A | 2025-09-07 A | DMM2-Eng-PQ-077 | 100% | Eng.Labour [14.58 h]; POT Gate V dia 110 mm; POT Wash out valve Dia. 100 mm on pipes with Dia. 110-400 mm; POT Air valve Dia. 50 mm on pipes with Dia. less than 315 mm | 0.00128361125935162 | Eng | Potable | Eng | EN.UNSC | SUB.C |
| DMM2-Eng-PQ-338 |  | Review & Approval for HDPE Pipes Materials | 2d | 2025-10-11 A | 2025-10-12 A | DMM2-Eng-PQ-076 | 100% | Eng.Labour [14.58 h]; Depth: 0.0m - 1.5m; Depth: 1.51m - 2.5m | 0.0230076830356649 | Eng | Potable | Eng | EN.UNSC | SUB.C |
| DMM2-Eng-PQ-1758 |  | Review & Approval for Flow Meter Chamber Materials | 2d | 2025-11-11 A | 2025-11-12 A | DMM2-Eng-PQ-078, DMM2-Eng-PQ-368 | 100% | Eng.Labour [14.58 h]; Flow meter chamber | 0.000345362452331904 | Eng | Potable | Eng | EN.UNSC | SUB.C |
| DMM2-Eng-PQ-358 |  | Review & Approval for Valves Chambers Materials | 2d | 2025-11-11 A | 2025-11-12 A | DMM2-Eng-PQ-078, DMM2-Eng-PQ-338 | 100% | Eng.Labour [14.58 h]; Wash out valve chamber; on 110-400 mm Dia. pipeline; Air valve chamber; on less than 315 mm Dia. pipeline | 0.00512303087121863 | Eng | Potable | Eng | EN.UNSC | SUB.C |
| DMM2-Eng-PQ-368 |  | Review & Approval for Flow Meter Materials | 4d | 2025-12-22 A | 2025-12-25 A | DMM2-Eng-PQ-079, DMM2-Eng-PQ-358 | 100% | Eng.Labour [29.16 h]; Flow meter | 0.000414276033694451 | Eng | Potable | Eng | EN.UNSC | SUB.C |
|  | TSE | **TSE Network** |  | 2025-09-06 | 2026-01-14 |  |  |  |  |  |  |  |  |  |
| DMM2-Eng-PQ-398 |  | Review & Approval for Valves Materials | 2d | 2025-09-06 A | 2025-09-07 A | DMM2-Eng-PQ-082, DMM2-Eng-PQ-388 | 100% | Eng.Labour [14.58 h]; TSE Gate V Dia. 100 mm; TSE Gate V Dia. 150 mm; TSE Wash out valve Dia. 100 mm on pipes with Dia. 110-400 mm; TSE Air valve Dia. 50 mm on pipes with Dia. less than 315 mm | 0.00137288997732517 | Eng | TSE | Eng | EN.UNSC | SUB.C |
| DMM2-Eng-PQ-378 |  | Review & Approval for HDPE Pipes Materials | 2d | 2025-10-11 A | 2025-10-12 A | DMM2-Eng-PQ-080 | 100% | Eng.Labour [14.58 h]; Dia. 25mm 0.0m - 1.5m; Dia. 32mm 0.0m - 1.5m; Dia. 50mm 0.0m - 1.5m; Dia. 63mm 0.0m - 1.5m; Dia. 75mm 0.0m - 1.5m; Dia. 90mm 0.0m - 1.5m; Dia. 110mm 0.0m - 1.5m; Dia. 125mm 0.0m - 1.5m | 0.0246408337319325 | Eng | TSE | Eng | EN.UNSC | SUB.C |
| DMM2-Eng-PQ-1688 |  | Review & Approval for Dripper Materials | 2d | 2026-01-13 A | 2026-01-14 A | DMM2-Eng-PQ-1648 | 100% | Eng.Labour [14.58 h] |  | Eng | TSE | Eng | EN.UNSC |  |
| DMM2-Eng-PQ-1698 |  | Review & Approval for Bubbler Materials | 2d | 2026-01-13 A | 2026-01-14 A | DMM2-Eng-PQ-1658, DMM2-Eng-PQ-1688 | 100% | Eng.Labour [14.58 h] |  | Eng | TSE | Eng | EN.UNSC |  |
| DMM2-Eng-PQ-1708 |  | Review & Approval for Pull Box Materials | 2d | 2026-01-13 A | 2026-01-14 A | DMM2-Eng-PQ-1668 | 100% | Eng.Labour [14.58 h] |  | Eng | TSE | Eng | EN.UNSC |  |
| DMM2-Eng-PQ-1718 |  | Review & Approval for Two Wire Decoder Cable 12 awg Materials | 2d | 2026-01-13 A | 2026-01-14 A | DMM2-Eng-PQ-1678 | 100% | Eng.Labour [14.58 h] |  | Eng | TSE | Eng | EN.UNSC |  |
| DMM2-Eng-PQ-388 |  | Review & Approval for Solenoid Primary Control Valves Materials | 2d | 2026-01-13 A | 2026-01-14 A | DMM2-Eng-PQ-081, DMM2-Eng-PQ-1698 | 100% | Eng.Labour [14.58 h]; Solenoid Valve box. 1 Solenoid valve Dia. 1 inch.; Solenoid Valve box. 1 Solenoid valve Dia. 1.5 inch.; Solenoid Valve box. 1 Solenoid valve Dia. 2.0inch. | 0.00078967032734029 | Eng | TSE | Eng | EN.UNSC | SUB.C |

| ID | WBS | Activity | Duration | Start | Finish | Predecessors | Complete | Total float | Free float | Resources | Weight % | DMM2 Weekly Progress | Networks & Stations | DMM2 Phases | UNASCO | Subcontractors works | JANCO |
| --- | --- | --- | --- | --- | --- | --- | --- | --- | --- | --- | --- | --- | --- | --- | --- | --- | --- |
|  | Fire Fighting | **Fire Fighting Network** |  | 2025-09-06 | 2025-12-13 |  |  |  |  |  |  |  |  |  |  |  |  |
| DMM2-Eng-PQ-418 |  | Review & Approval for Valves Materials | 2d | 2025-09-06 A | 2025-09-07 A | DMM2-Eng-PQ-074 | 100% |  |  | Eng.Labour [14.58 h]; FF Gate V dia 250 mm; FF Wash out valve Dia. 100 mm on pipes with Dia. 110-400 mm; FF Air valve Dia. 50 mm on pipes with Dia. less than 315 mm | 0.00250925721429531 | Eng | Fire | Eng | EN.UNSC | SUB.C |  |
| DMM2-Eng-PQ-1728 |  | Review & Approval for Fire Hydrant Materials | 2d | 2025-09-09 A | 2025-09-10 A | DMM2-Eng-PQ-1948 | 100% |  |  | Eng.Labour [14.58 h]; 3-outlet fire hydrant (2 x 2.5 inch and 1 x 4.5 inch) in the form of a separate dry vacuum cylinder | 0.0132518571580918 | Eng | Fire | Eng | EN.UNSC | SUB.C |  |
| DMM2-Eng-PQ-408 |  | Review & Approval for HDPE Pipes Materials | 2d | 2025-10-11 A | 2025-10-12 A | DMM2-Eng-PQ-073 | 100% |  |  | Eng.Labour [14.58 h]; Depth: 0.0m - 1.5m; Depth: 1.51m - 2.5m | 0.0499152347695901 | Eng | Fire | Eng | EN.UNSC | SUB.C |  |
| DMM2-Eng-PQ-1748 |  | Review & Approval for Flow Meter Chamber Materials | 2d | 2025-11-11 A | 2025-11-12 A | DMM2-Eng-PQ-075 | 100% |  |  | Eng.Labour [14.58 h]; FF Flow meter chamber | 0.000690724904663807 | Eng | Fire | Eng | EN.UNSC | SUB.C |  |
| DMM2-Eng-PQ-428 |  | Review & Approval for Valves Chambers Materials | 2d | 2025-11-11 A | 2025-11-12 A | DMM2-Eng-PQ-075 | 100% |  |  | Eng.Labour [14.58 h]; FF Wash out valve chamber; on 110-400 mm Dia. pipeline; FF Air valve chamber; on less than 315 mm Dia. pipeline | 0.00959689507755014 | Eng | Fire | Eng | EN.UNSC | SUB.C |  |
| DMM2-Eng-PQ-1738 |  | Review & Approval for Flow Meter Materials | 1d | 2025-12-13 A | 2025-12-13 A | DMM2-Eng-PQ-079 | 100% |  |  | Eng.Labour [7.29 h]; FF Flow meter | 0.000552368004705964 | Eng | Fire | Eng | EN.UNSC | SUB.C |  |
|  | Pot Pump St. | **Potable Water Pump Station** |  | 2025-08-11 | 2026-10-27 |  |  |  |  |  |  |  |  |  |  |  |  |
|  | 1 | **Civil & Architecture** |  | 2025-08-11 | 2026-07-12 |  |  |  |  |  |  |  |  |  |  |  |  |
| DMM2-Eng-PQ-448 |  | Review & Approval for CMU Walls Materials | 6d | 2025-08-11 A | 2025-08-17 A | DMM2-Eng-PQ-0114 | 100% |  |  | Eng.Labour [43.74 h] |  | Eng | Pump | Eng |  |  |  |
| DMM2-Eng-PQ-488 |  | Review & Approval for Gravel Materials | 7d | 2025-11-18 A | 2025-11-25 A | DMM2-Eng-PQ-0118 | 100% |  |  | Eng.Labour [51.03 h] |  | Eng | Pump | Eng |  |  |  |
| DMM2-Eng-PQ-438 |  | Review & Approval for Stairs Materials | 3d | 2026-05-02 A | 2026-05-04 A | DMM2-Eng-PQ-0113 | 100% |  |  | Eng.Labour [21.87 h] |  | Eng | Pump | Eng |  |  |  |
| DMM2-Eng-PQ-458 |  | Review & Approval for Stainless Steel Ladder Materials | 3d | 2026-05-02 A | 2026-05-04 A | DMM2-Eng-PQ-0115 | 100% |  |  | Eng.Labour [21.87 h] |  | Eng | Pump | Eng |  |  |  |
| DMM2-Eng-PQ-468 |  | Review & Approval for Steel shutter Door Materials | 6d | 2026-05-02 A | 2026-05-07 A | DMM2-Eng-PQ-0116 | 100% |  |  | Eng.Labour [43.74 h] |  | Eng | Pump | Eng |  |  |  |
| DMM2-Eng-PQ-498 |  | Review & Approval for Handrail Materials | 6d | 2026-05-02 A | 2026-05-07 A | DMM2-Eng-PQ-0119 | 100% |  |  | Eng.Labour [43.74 h] |  | Eng | Pump | Eng |  |  |  |
| DMM2-Eng-PQ-478 |  | Review & Approval for Metal Railing Materials | 2d | 2026-07-11 A | 2026-07-12 A | DMM2-Eng-PQ-0117 | 100% |  |  | Eng.Labour [14.58 h] |  | Eng | Pump | Eng |  |  |  |
|  | 3 | **Mechanical** |  | 2025-09-06 | 2026-10-27 |  |  |  |  |  |  |  |  |  |  |  |  |
| DMM2-Eng-PQ-1788 |  | Review & Approval for Gate Valves Materials | 2d | 2025-09-06 A | 2025-09-07 A | DMM2-Eng-PQ-1958 | 100% |  |  | Eng.Labour [14.58 h]; Gate Valve DN60,; Gate Valve DN80,; Gate Valve DN100,; Gate Valve DN200,; Gate Valve DN350, | 0.0014421002681157 | Eng | Pump | Eng |  | SUB.C | PWPS |
| DMM2-Eng-PQ-1798 |  | Review & Approval for Non Return (Flap) Valves Materials | 2d | 2025-09-06 A | 2025-09-07 A | DMM2-Eng-PQ-091 | 100% |  |  | Eng.Labour [14.58 h]; Non return Valve DN60; Non return Valve DN300 | 0.000585076895794993 | Eng | Pump | Eng |  | SUB.C | PWPS |
| DMM2-Eng-PQ-528 |  | Review & Approval for Butterfly Valve Materials | 2d | 2025-09-06 A | 2025-09-07 A | DMM2-Eng-PQ-0122 | 100% |  |  | Eng.Labour [14.58 h]; Butterfly Valve DN200; Butterfly Valve DN300 | 0.000338674937050635 | Eng | Pump | Eng |  | SUB.C | PWPS |
| DMM2-Eng-PQ-568 |  | Review & Approval for FM200 Supression System Materials | 2d | 2025-10-06 A | 2025-10-07 A | DMM2-Eng-PQ-0126 | 100% |  |  | Eng.Labour [14.58 h] |  | Eng | Pump | Eng |  |  | PWPS |
| DMM2-Eng-PQ-1768 |  | Review & Approval for Submersible Pumps Materials | 2d | 2025-10-28 A | 2025-10-29 A | DMM2-Eng-PQ-087 | 100% |  |  | Eng.Labour [14.58 h]; Submersible pump | 0.004649680378174 | Eng | Pump | Eng |  | SUB.C | PWPS |
| DMM2-Eng-PQ-508 |  | Review & Approval for Water Pumps Materials | 2d | 2025-10-28 A | 2025-10-29 A | DMM2-Eng-PQ-0120 | 100% |  |  | Eng.Labour [14.58 h]; Vertical multistage cintrifugal pump | 0.00787517773100938 | Eng | Pump | Eng |  | SUB.C | PWPS |
| DMM2-Eng-PQ-518 |  | Review & Approval for Fire Pumps Materials | 2d | 2025-10-28 A | 2025-10-29 A | DMM2-Eng-PQ-0121 | 100% |  |  | Eng.Labour [14.58 h]; Split case cintrifugal pump; Vertical multistage cintrifugal (jockey) pump | 0.0429789534956215 | Eng | Pump | Eng |  | SUB.C | PWPS |
| DMM2-Eng-PQ-1778 |  | Review & Approval for DI Pipes Materials | 2d | 2025-11-10 A | 2025-11-11 A | DMM2-Eng-PQ-088, DMM2-Eng-PQ-089 | 100% |  |  | Eng.Labour [14.58 h]; BDI Dia. 80 mm; BDI Dia. 100 mm; BDI Dia. 200 mm; BDI Dia. 300 mm; BDI Dia. 350 mm; DDI Dia. 60 mm; DDI Dia. 80 mm; DDI Dia. 100 mm; DDI Dia. 200 mm; DDI Dia. 300 mm; DDI Dia. 350 mm | 0.00129970399885218 | Eng | Pump | Eng |  | SUB.C | PWPS |
| DMM2-Eng-PQ-538 |  | Review & Approval for OverHead Crane Materials | 2d | 2025-11-22 A | 2025-11-23 A | DMM2-Eng-PQ-0123 | 100% |  |  | Eng.Labour [14.58 h]; OverHead Crane | 0.00148580012084508 | Eng | Pump | Eng |  | SUB.C | PWPS |
| DMM2-Eng-PQ-1808 |  | Review & Approval for Electromagnetic Flow Meters Materials | 5d | 2025-12-21 A | 2025-12-25 A | DMM2-Eng-PQ-1968 | 100% |  |  | Eng.Labour [36.45 h]; Electromagnetic Flowmeter DN80, PN16; Electromagnetic Flowmeter DN200, PN16 | 0.00138354208236311 | Eng | Pump | Eng |  | SUB.C | PWPS |
| DMM2-Eng-PQ-608 |  | Review & Approval for Chlorinators Materials | 1d | 2026-01-12 A | 2026-01-12 A | DMM2-Eng-PQ-0130 | 100% |  |  | Eng.Labour [7.29 h] |  | Eng | Pump | Eng |  |  | PWPS |
| DMM2-Eng-PQ-1818 |  | Review & Approval for Surge Tank Materials | 1d | 2026-01-14 A | 2026-01-14 A | DMM2-Eng-PQ-094 | 100% |  |  | Eng.Labour [7.29 h]; Surge Tank | 0.0633954209559155 | Eng | Pump | Eng |  | SUB.C | PWPS |
| DMM2-Eng-PQ-1828 |  | Review & Approval for Fans Materials | 2d | 2026-01-25 A | 2026-01-26 A | DMM2-Eng-PQ-1978 | 100% |  |  | Eng.Labour [14.58 h] |  | Eng | Pump | Eng |  |  | PWPS |
| DMM2-Eng-PQ-588 |  | Review & Approval for Exhaust Fans Materials | 1d | 2026-01-25 A | 2026-01-25 A | DMM2-Eng-PQ-0128 | 100% |  |  | Eng.Labour [7.29 h] |  | Eng | Pump | Eng |  |  | PWPS |
| DMM2-Eng-PQ-548 |  | Review & Approval for Strainers Materials | 3.83d | 2026-01-31 A | 2026-02-03 A | DMM2-Eng-PQ-0124 | 100% |  |  | Eng.Labour [27.9 h] |  | Eng | Pump | Eng |  |  | PWPS |
| DMM2-Eng-PQ-598 |  | Review & Approval for Chlorine Cylinder Racks Materials | 3.83d | 2026-01-31 A | 2026-02-03 A | DMM2-Eng-PQ-0129 | 100% |  |  | Eng.Labour [27.9 h] |  | Eng | Pump | Eng |  |  | PWPS |
| DMM2-Eng-PQ-618 |  | Review & Approval for Discharge Line Analyzer Materials | 3.83d | 2026-01-31 A | 2026-02-03 A | DMM2-Eng-PQ-0131 | 100% |  |  | Eng.Labour [27.9 h] |  | Eng | Pump | Eng |  |  | PWPS |
| DMM2-Eng-PQ-628 |  | Review & Approval for Emergency shower Materials | 3.83d | 2026-01-31 A | 2026-02-03 A | DMM2-Eng-PQ-0132 | 100% |  |  | Eng.Labour [27.9 h] |  | Eng | Pump | Eng |  |  | PWPS |
| DMM2-Eng-PQ-638 |  | Review & Approval for Trench Drain Materials | 6d | 2026-08-09 A | 2026-08-15 A | DMM2-Eng-PQ-0133 | 100% |  |  | Eng.Labour [43.74 h] |  | Eng | Pump | Eng |  |  | PWPS |
| DMM2-Eng-PQ-558 |  | Review & Approval for Sand Trap Louver Materials | 5d | 2026-08-10 A | 2026-08-15 A | DMM2-Eng-PQ-0125 | 100% |  |  | Eng.Labour [36.45 h] |  | Eng | Pump | Eng |  |  | PWPS |
| DMM2-Eng-PQ-1838 |  | Review & Approval for Louvers Materials | 2d | 2026-08-16 A | 2026-08-17 A | DMM2-Eng-PQ-1988 | 100% |  |  | Eng.Labour [14.58 h] |  | Eng | Pump | Eng |  |  | PWPS |
| DMM2-Eng-PQ-578 |  | Review & Approval for Hose Bibb Materials | 3d | 2026-10-25 | 2026-10-27 | DMM2-Eng-PQ-0127, DMM2-Eng-PQ-0126 |  | 105.32d | 0d | Eng.Labour [21.87 h] |  | Eng | Pump | Eng |  |  | PWPS |

| ID | WBS | Activity | Duration | Start | Finish | Predecessors | Complete | Planned start | Planned finish | Resources | Weight % | DMM2 Weekly Progress | Networks & Stations | DMM2 Phases | JANCO | Subcontractors works |
| --- | --- | --- | --- | --- | --- | --- | --- | --- | --- | --- | --- | --- | --- | --- | --- | --- |
|  | 2 | **Electrical** |  | 2025-10-08 | 2026-01-22 |  |  |  |  |  |  |  |  |  |  |  |
| DMM2-Eng-PQ-1898 |  | Review & Approval for Addressable Fire Alarm System Materials | 2d | 2025-10-08 A | 2025-10-09 A | DMM2-Eng-PQ-1998 | 100% |  |  | Eng.Labour [14.58 h]; Addressable fire alarm system | 0.00134864826148132 | Eng | Pump | Eng | PWPS | SUB.C |
| DMM2-Eng-PQ-648 |  | Review & Approval for LV Cables Materials | 2d | 2025-10-20 A | 2025-10-21 A | DMM2-Eng-PQ-0101 | 100% |  |  | Eng.Labour [14.58 h]; 4x1Cx 630mm2 Cu/XLPE//PVC from nearest power supply (SEC) and from generator to the ATS and from ATS to MCC-PW; 4Cx 10mm2 Cu/XLPE/SWA/PVC from MCC-PW to ELP; 4/Cx35mm²+1Cx16mm², CU/MICA/XLPE/LSOH, FIRE RESISTANT CABLE FROM MCC-PW TO Fire pump control panel; 4/Cx6mm² Cu/XLPE/PVC + 1Cx6mm² Cu/PVC from MCC-PW to potable water pumps; 4Cx 25mm2 + 1Cx16mm2 Cu/XLPE/PVC FROM MCC-PW to DB-PW; 3Cx 6mm2 Cu/XLPE/PVC FROM MCC-PW to the two fuel pumps.; 4Cx 25mm2 + 1Cx11mm2 Cu/XLPE/PVC FROM MCC-PW to DB-CH; 3Cx 6mm2 Cu/XLPE/PVC FROM MCC-SPS to the two fuel pumps.; 4Cx 10mm2 + 1Cx10mm2 Cu/XLPE/PVC FROM MCC-PW to EPS; 4Cx 6mm2 Cu/XLPE/SWA/PVC FROM EPS to LIGHTING POLES | 0.00226609479099596 | Eng | Pump | Eng | PWPS | SUB.C |
| DMM2-Eng-PQ-1888 |  | Review & Approval for Generators Materials | 2d | 2025-11-11 A | 2025-11-12 A | DMM2-Eng-PQ-0102 | 100% |  |  | Eng.Labour [14.58 h]; Standby Diesel Generator Set 550 KVA, 400/230KVA, 3P, 60Hz in Sound Attenuated Enclosure | 0.0057264485260811 | Eng | Pump | Eng | PWPS | SUB.C |
| DMM2-Eng-PQ-1858 |  | Review & Approval for Motor Control Center (MCC) Materials | 5d | 2025-12-17 A | 2025-12-22 A | DMM2-Eng-PQ-099 | 100% |  |  | Eng.Labour [36.45 h]; MCC - 200AT/200AF, 400V, 3PH, 60HZ, | 0.00237868392060096 | Eng | Pump | Eng | PWPS | SUB.C |
| DMM2-Eng-PQ-1868 |  | Review & Approval for Local Control Panel Materials - Pump | 4d | 2025-12-17 A | 2025-12-21 A | DMM2-Eng-PQ-0100, DMM2-Eng-PQ-1858 | 100% |  |  | Eng.Labour [29.16 h]; Local Control Panel, IP 65 | 0.000519155861234824 | Eng | Pump | Eng | PWPS | SUB.C |
| DMM2-Eng-PQ-1878 |  | Review & Approval for Panelboards Materials | 4d | 2025-12-17 A | 2025-12-21 A | DMM2-Eng-PQ-0100 | 100% |  |  | Eng.Labour [29.16 h]; DB-PW Panel: 100 Ampere, 3P, IP66,60Hz incomer MCCB; DB-CL Panel: 100 Ampere, 3P, IP66,60Hz incomer MCCB; ELP Panel: phtocell , timer,40 Ampere, 3P, IP66,60Hz incomer MCCB & 5ways outgoing MCCB | 0.000338582270238377 | Eng | Pump | Eng | PWPS | SUB.C |
| DMM2-Eng-PQ-1938 |  | Review & Approval for Automatic Transfer Switch ATS panel Materials | 2d | 2025-12-17 A | 2025-12-18 A | DMM2-Eng-PQ-0104, DMM2-Eng-PQ-1868 | 100% |  |  | Eng.Labour [14.58 h]; supply, install, test & commission Automatic Transfer Switch ATS panel | 0.00132148816781099 | Eng | Pump | Eng | PWPS | SUB.C |
| DMM2-Eng-PQ-1848 |  | Review & Approval for Switches and Circuit Breakers Materials | 4d | 2026-01-10 A | 2026-01-13 A | DMM2-Eng-PQ-0134 | 100% |  |  | Eng.Labour [29.16 h] |  | Eng | Pump | Eng | PWPS |  |
| DMM2-Eng-PQ-1908 |  | Review & Approval for PLC System Materials | 2d | 2026-01-21 A | 2026-01-22 A | DMM2-Eng-PQ-0110 | 100% |  |  | Eng.Labour [14.58 h]; Testing and commissioning of PLC system, serving the pumping station and all related utilities | 0.0127476088549873 | Eng | Pump | Eng | PWPS | SUB.C |
|  | Sewer Lift St. | **Sewer Lift Station** |  | 2025-09-06 | 2026-09-22 |  |  |  |  |  |  |  |  |  |  |  |
|  | 1 | **Civil & Architecture** |  | 2025-12-14 | 2026-09-22 |  |  |  |  |  |  |  |  |  |  |  |
| DMM2-Eng-PQ-668 |  | Review & Approval for Metal Covers Materials | 5d | 2025-12-14 A | 2025-12-18 A | DMM2-Eng-PQ-084 | 100% |  |  | Eng.Labour [36.45 h] |  | Eng | Lift | Eng |  |  |
| DMM2-Eng-PQ-658 |  | Review & Approval for Metal Ladders Materials | 6d | 2026-05-02 A | 2026-05-07 A | DMM2-Eng-PQ-083 | 100% |  |  | Eng.Labour [43.74 h] |  | Eng | Lift | Eng |  |  |
| DMM2-Eng-PQ-678 |  | Review & Approval for Internal painting (Acrylic) Materials | 5d | 2026-05-13 A | 2026-05-18 A | DMM2-Eng-PQ-085 | 100% |  |  | Eng.Labour [36.45 h] |  | Eng | Lift | Eng |  |  |
| DMM2-Eng-PQ-688 |  | Review & Approval for Signages Materials | 6d | 2026-09-17 A | 2026-09-22 A | DMM2-Eng-PQ-086 | 100% | 2026-09-16 | 2026-09-22 | Eng.Labour [43.74 h] |  | Eng | Lift | Eng |  |  |
|  | 3 | **Mechanical** |  | 2025-09-06 | 2026-08-10 |  |  |  |  |  |  |  |  |  |  |  |
| DMM2-Eng-PQ-738 |  | Review & Approval for Non Return Valve (Flap) Materials | 2d | 2025-09-06 A | 2025-09-07 A | DMM2-Eng-PQ-091 | 100% |  |  | Eng.Labour [14.58 h]; Non return Valve DN150 | 0.00013425164755888 | Eng | Lift | Eng | SLS | SUB.C |
| DMM2-Eng-PQ-698 |  | Review & Approval for Submersible Pumps Materials | 2d | 2025-10-28 A | 2025-10-29 A | DMM2-Eng-PQ-087 | 100% |  |  | Eng.Labour [14.58 h]; Submersibel, wet installed pump | 0.00499928040660814 | Eng | Lift | Eng | SLS | SUB.C |
| DMM2-Eng-PQ-708 |  | Review & Approval for Double Flanged DI Pipes Materials | 2d | 2025-11-10 A | 2025-11-11 A | DMM2-Eng-PQ-088 | 100% |  |  | Eng.Labour [14.58 h]; Double flanged ductile iron pipe with Dia. 150 mm | 0.000124944357993922 | Eng | Lift | Eng | SLS | SUB.C |
| DMM2-Eng-PQ-718 |  | Review & Approval for Buried Flanged DI Pipes Materials | 2d | 2025-11-10 A | 2025-11-11 A | DMM2-Eng-PQ-089 | 100% |  |  | Eng.Labour [14.58 h]; Buried ductile iron pipes with Dia. 150 mm | 0.000208240596656537 | Eng | Lift | Eng | SLS | SUB.C |
| DMM2-Eng-PQ-778 |  | Review & Approval for JIB Crane Materials | 2d | 2025-11-22 A | 2025-11-23 A | DMM2-Eng-PQ-095, DMM2-Eng-PQ-768 | 100% |  |  | Eng.Labour [14.58 h]; JIB Crane | 0.00148580012084508 | Eng | Lift | Eng | SLS | SUB.C |
| DMM2-Eng-PQ-758 |  | Review & Approval for Odor Control Unit Materials | 3d | 2025-12-03 A | 2025-12-06 A | DMM2-Eng-PQ-093 | 100% |  |  | Eng.Labour [21.87 h]; Odor Control Unit | 0.00323380026301575 | Eng | Lift | Eng | SLS | SUB.C |
| DMM2-Eng-PQ-728 |  | Review & Approval for Geotextile Membrane Materials | 3d | 2025-12-04 A | 2025-12-07 A | DMM2-Eng-PQ-090 | 100% |  |  | Eng.Labour [21.87 h] |  | Eng | Lift | Eng | SLS |  |
| DMM2-Eng-PQ-748 |  | Review & Approval for Basket Screens Materials | 5.75d | 2026-02-07 A | 2026-02-12 A | DMM2-Eng-PQ-092 | 100% |  |  | Eng.Labour [41.92 h]; Basket screens | 0.00292964829860801 | Eng | Lift | Eng | SLS | SUB.C |
| DMM2-Eng-PQ-788 |  | Review & Approval for Penstock Materials | 5.75d | 2026-02-07 A | 2026-02-12 A | DMM2-Eng-PQ-096 | 100% |  |  | Eng.Labour [41.92 h] |  | Eng | Lift | Eng | SLS |  |
| DMM2-Eng-PQ-798 |  | Review & Approval for Screening Container Materials | 5.75d | 2026-02-07 A | 2026-02-12 A | DMM2-Eng-PQ-097, DMM2-Eng-PQ-788 | 100% |  |  | Eng.Labour [41.92 h] |  | Eng | Lift | Eng | SLS |  |
| DMM2-Eng-PQ-808 |  | Review & Approval for Scupper Materials | 5.75d | 2026-02-07 A | 2026-02-12 A | DMM2-Eng-PQ-098, DMM2-Eng-PQ-798 | 100% |  |  | Eng.Labour [41.92 h] |  | Eng | Lift | Eng | SLS |  |
| DMM2-Eng-PQ-768 |  | Review & Approval for Surge Tank Materials | 90d | 2026-04-23 A | 2026-08-10 A | DMM2-Eng-PQ-094, DMM2-Eng-PQ-758 | 100% |  |  | Eng.Labour [656.08 h]; Surge Tank | 0.00475456038670425 | Eng | Lift | Eng | SLS | SUB.C |

| ID | WBS | Activity | Duration | Start | Finish | Predecessors | Complete | Resources | Weight % | DMM2 Weekly Progress | Networks & Stations | DMM2 Phases | JANCO | Subcontractors works |
| --- | --- | --- | --- | --- | --- | --- | --- | --- | --- | --- | --- | --- | --- | --- |
|  | 2 | **Electrical** |  | 2025-10-20 | 2026-05-12 |  |  |  |  |  |  |  |  |  |
| DMM2-Eng-PQ-838 |  | Review & Approval for Low Voltage Cables Materials | 2d | 2025-10-20 A | 2025-10-21 A | DMM2-Eng-PQ-0101 | 100% | Eng.Labour [14.58 h]; 4Cx 95mm2 Cu/XLPE//PVC from nearest power supply (SEC) and generator to the ATS and from ATS to MCC-SPS; 4Cx 10mm2 Cu/XLPE/SWA/PVC from MCC-SPS to ELP; 4Cx 35mm2 + 1Cx16mm2 SUBMERGED RUBBER INSULATED FLEXIBLE CABLE from MCC to PUMP1& PUMP2.; 4Cx 10mm2 + 1Cx10mm2 Cu/XLPE/PVC FROM MCC-SPS to DB-SPS; 4Cx 10mm2 + 1Cx10mm2 Cu/XLPE/PVC FROM MCC-SPS to Penstok; 4Cx 10mm2 + 1Cx10mm2 Cu/XLPE/PVC FROM MCC-SPS to Odor Control Unit; 4Cx 6mm2 + 1Cx6mm2 Cu/XLPE/PVC FROM MCC-SPS to the mechanical bar screen; 3Cx 6mm2 Cu/XLPE/PVC FROM MCC-SPS to the two fuel pumps.; 4Cx 6mm2 + 1Cx6mm2 Cu/XLPE/PVC FROM MCC-SPS to the mechanical crane | 0.000419994730197233 | Eng | Lift | Eng | SLS | SUB.C |
| DMM2-Eng-PQ-858 |  | Review & Approval for Fuel Pump Materials | 2d | 2025-10-28 A | 2025-10-29 A | DMM2-Eng-PQ-0103 | 100% | Eng.Labour [14.58 h]; Manually operated fuel pump | 7.30716425829062E-005 | Eng | Lift | Eng | SLS | SUB.C |
| DMM2-Eng-PQ-888 |  | Review & Approval for Displacement Rotary Type Pump Materials | 2d | 2025-10-28 A | 2025-10-29 A | DMM2-Eng-PQ-0106 | 100% | Eng.Labour [14.58 h]; Positive displacement rotary type pump | 0.000194028076110901 | Eng | Lift | Eng | SLS | SUB.C |
| DMM2-Eng-PQ-848 |  | Review & Approval for Standby Diesel Generator Materials | 2d | 2025-11-11 A | 2025-11-12 A | DMM2-Eng-PQ-0102 | 100% | Eng.Labour [14.58 h]; Standby Diesel Generator Set 100 KVA, 400/230KVA, 3P, 60Hz in Sound Attenuated Enclosure | 0.00312192831424679 | Eng | Lift | Eng | SLS | SUB.C |
| DMM2-Eng-PQ-898 |  | Review & Approval for Electrical Hand Holes Materials | 2d | 2025-11-11 A | 2025-11-12 A | DMM2-Eng-PQ-0107 | 100% | Eng.Labour [14.58 h] |  | Eng | Lift | Eng | SLS |  |
| DMM2-Eng-PQ-818 |  | Review & Approval for Motor Control Center (MCC) Materials | 4d | 2025-12-17 A | 2025-12-21 A | DMM2-Eng-PQ-099 | 100% | Eng.Labour [29.16 h]; MCC - 160AT/250AF, 400V, 3PH, 60HZ, | 0.00110036605933146 | Eng | Lift | Eng | SLS | SUB.C |
| DMM2-Eng-PQ-828 |  | Review & Approval for Local Control Panel Materials - Lift | 4d | 2025-12-17 A | 2025-12-21 A | DMM2-Eng-PQ-0100 | 100% | Eng.Labour [29.16 h]; Local Control Panel, IP 65 | 0.000346103907489882 | Eng | Lift | Eng | SLS | SUB.C |
| DMM2-Eng-PQ-868 |  | Review & Approval for Automatic Transfer (Switch ATS) Materials | 4d | 2025-12-17 A | 2025-12-21 A | DMM2-Eng-PQ-0104, DMM2-Eng-PQ-818 | 100% | Eng.Labour [29.16 h]; Automatic Transfer Switch ATS panel | 0.000632776021300808 | Eng | Lift | Eng | SLS | SUB.C |
| DMM2-Eng-PQ-908 |  | Review & Approval for Galvanized Steel Pole Materials | 5d | 2025-12-24 A | 2025-12-29 A | DMM2-Eng-PQ-0108 | 100% | Eng.Labour [36.45 h] |  | Eng | Lift | Eng | SLS |  |
| DMM2-Eng-PQ-938 |  | Review & Approval for Process Control Wiring Materials | 5d | 2025-12-24 A | 2025-12-29 A | DMM2-Eng-PQ-0111 | 100% | Eng.Labour [36.45 h] |  | Eng | Lift | Eng | SLS |  |
| DMM2-Eng-PQ-2002 |  | Review & Approval for PLC Materials - Lift | 2d | 2026-01-21 A | 2026-01-22 A | DMM2-Eng-PQ-0110 | 100% | Eng.Labour [14.58 h]; Supply, installation, testing and commissioning of PLC system | 0.0361633685773748 | Eng | Lift | Eng | SLS | SUB.C |
| DMM2-Eng-PQ-948 |  | Review & Approval for Instrumentation for Process Systems Materials | 1d | 2026-01-21 A | 2026-01-21 A | DMM2-Eng-PQ-0112, DMM2-Eng-PQ-868 | 100% | Eng.Labour [7.29 h] |  | Eng | Lift | Eng | SLS |  |
| DMM2-Eng-PQ-918 |  | Review & Approval for Surfaced Mounted Light (LED) Materials | 8d | 2026-02-05 A | 2026-02-15 A | DMM2-Eng-PQ-0109 | 100% | Eng.Labour [58.32 h] |  | Eng | Lift | Eng | SLS |  |
| DMM2-Eng-PQ-878 |  | Review & Approval for Under Ground Fuel Tank Materials | 4d | 2026-05-09 A | 2026-05-12 A | DMM2-Eng-PQ-0105 | 100% | Eng.Labour [29.16 h] |  | Eng | Lift | Eng | SLS |  |
|  | SDS1 | **Dry Networks** |  | 2025-10-28 | 2026-02-09 |  |  |  |  |  |  |  |  |  |
|  | MV | **Medium Voltage Network** |  | 2025-12-22 | 2026-01-17 |  |  |  |  |  |  |  |  |  |
| DMM2-Eng-PQ-968 |  | Review & Approval for Straight Joints, Termination Materials | 4d | 2025-12-22 A | 2025-12-25 A | DMM2-Eng-PQ-0136 | 100% | Eng.Labour [29.16 h] |  | Eng | MV | Eng |  |  |
| DMM2-Eng-PQ-958 |  | Review & Approval for MV Cables Materials | 2d | 2025-12-27 A | 2025-12-28 A | DMM2-Eng-PQ-0135 | 100% | Eng.Labour [14.58 h]; Cable 13.8 kV 3Cx 500 mm² Al XLPE,/LLDPE / Unarmored; Copper Cable 13.8 kV 3Cx 50 mm² CU/XLPE/STA/PVC | 0.0648004795344238 | Eng | MV | Eng |  | SUB.C |
| DMM2-Eng-PQ-978 |  | Review & Approval for Unit Substation Materials | 2d | 2026-01-15 A | 2026-01-17 A | DMM2-Eng-PQ-0137, DMM2-Eng-PQ-2002 | 100% | Eng.Labour [14.58 h]; Unit Substation 13.8/0.4 K V, 500kVA | 0.00516534042011435 | Eng | MV | Eng |  | SUB.C |
| DMM2-Eng-PQ-988 |  | Review & Approval for RMU Materials | 2d | 2026-01-15 A | 2026-01-17 A | DMM2-Eng-PQ-0138, DMM2-Eng-PQ-2002 | 100% | Eng.Labour [14.58 h]; RMU, 13.8KV | 0.00225492018340018 | Eng | MV | Eng |  | SUB.C |
|  | LV | **Low Voltage Network** |  | 2025-10-28 | 2026-02-09 |  |  |  |  |  |  |  |  |  |
| DMM2-Eng-PQ-998 |  | Review & Approval for LV Cables Materials | 2d | 2025-10-28 A | 2025-10-29 A | DMM2-Eng-PQ-0139 | 100% | Eng.Labour [14.58 h]; Cable, Copper 4x10mm2/ CU/XLPE/SWA/PVC + 1x10mm2 CU/PVC; Cable, Copper 4x50mm2/ CU/XLPE/PVC +1x25mm2 CU/PVC | 0.0145498264908067 | Eng | LV | Eng |  | SUB.C |
| DMM2-Eng-PQ-1008 |  | Review & Approval for LV Pillars Materials | 6d | 2026-02-03 A | 2026-02-09 A | DMM2-Eng-PQ-0140 | 100% | Eng.Labour [43.74 h]; 0.6/1 KV Low Voltage Distribution Pillars with 5 Outgoing feeders rated 200 Ampers Fuse type | 0.000589950047982604 | Eng | LV | Eng |  | SUB.C |
| DMM2-Eng-PQ-2000 |  | Review & Approval for LV Panels Materials | 6d | 2026-02-03 A | 2026-02-09 A | DMM2-Eng-PQ-1999 | 100% | Eng.Labour [43.74 h]; 0.6/1 KV Low Voltage Distribution Panels for Industrial UPS - Cameras | 0.000372324030282354 | Eng | LV | Eng |  | SUB.C |

| ID | WBS | Activity | Duration | Start | Finish | Predecessors | Complete | Planned start | Planned finish | Resources | Weight % | DMM2 Weekly Progress | Networks & Stations | DMM2 Phases | Subcontractors works |
| --- | --- | --- | --- | --- | --- | --- | --- | --- | --- | --- | --- | --- | --- | --- | --- |
|  | Telecom | **Telecommunication Network** |  | 2025-11-11 | 2026-01-13 |  |  |  |  |  |  |  |  |  |  |
| DMM2-Eng-PQ-1028 |  | Review & Approval for Manholes Type 1&2 Materials | 2d | 2025-11-11 A | 2025-11-12 A | DMM2-Eng-PQ-0148 | 100% |  |  | Eng.Labour [14.58 h]; Manhole Type 1; Manhole Type 2 | 0.00889510158229524 | Eng | Telecom | Eng | SUB.C |
| DMM2-Eng-PQ-1018 |  | Review & Approval for HDPE Ducts Materials | 5d | 2026-01-08 A | 2026-01-13 A | DMM2-Eng-PQ-0147 | 100% |  |  | Eng.Labour [36.45 h]; (6*50mm) HDPE ducts; (6*50mm+2*32mm) HDPE ducts; (6*50mm+4*32mm) HDPE ducts; (2*32mm) HDPE ducts; (4*32mm) HDPE ducts; (6*50mm+6*32mm) HDPE ducts; Telecom (6*32mm) HDPE ducts; Road crossing ducts, (6*50mm) HDPE; Road crossing ducts, (6*50mm+4*32mm) HDPE; Road crossing ducts, (2*32mm) HDPE | 0.0550097490074995 | Eng | Telecom | Eng | SUB.C |
|  | SL | **Street Lighting** |  | 2025-10-28 | 2026-02-05 |  |  |  |  |  |  |  |  |  |  |
| DMM2-Eng-PQ-1048 |  | Review & Approval for SL Cables Materials | 2d | 2025-10-28 A | 2025-10-29 A | DMM2-Eng-PQ-0142 | 100% |  |  | Eng.Labour [14.58 h]; SL Cable, Copper 4x10mm2/ CU/XLPE/SWA/PVC + 1x10mm2 CU/PVC; Cable, Copper 4x16mm2/ CU/XLPE/SWA/PVC + 1x16mm2 CU/PVC | 0.0204843761282848 | Eng | SL | Eng | SUB.C |
| DMM2-Eng-PQ-1088 |  | Review & Approval for SL Drawpits Materials | 2d | 2025-11-11 A | 2025-11-12 A | DMM2-Eng-PQ-0146 | 100% |  |  | Eng.Labour [14.58 h] |  | Eng | SL | Eng |  |
| DMM2-Eng-PQ-1058 |  | Review & Approval for SL Poles Materials | 2d | 2025-12-27 A | 2025-12-28 A | DMM2-Eng-PQ-0143 | 100% |  |  | Eng.Labour [14.58 h]; Lighting poles with 2 arms, height of ( 10) meters; Lighting poles with 1 arm, height of ( 10) meters; Lighting poles with 1 arm, height of ( 12 ) meters; Lighting poles with 2 arms , height of (16 ) meters | 0.0801731486667436 | Eng | SL | Eng | SUB.C |
| DMM2-Eng-PQ-1068 |  | Review & Approval for SL Luminares Materials | 2d | 2025-12-27 A | 2025-12-28 A | DMM2-Eng-PQ-0144 | 100% |  |  | Eng.Labour [14.58 h]; Street Lighting( LED), Lamp Lumen: 14560, Luminare Lumen:12700 , complete with control gear and lamp, (80) WATT.; Street Lighting( LED), Lamp Lumen: 24286, Luminare Lumen:20914, complete with control gear and lamp, (140) WATT.; Street Lighting( LED), Lamp Lumen: 34805, Luminare Lumen:28310, complete with control gear and lamp, (190) WATT. | 0.00964980046146765 | Eng | SL | Eng | SUB.C |
| DMM2-Eng-PQ-1038 |  | Review & Approval for SL Pillars Materials | 4d | 2026-02-02 A | 2026-02-05 A | DMM2-Eng-PQ-0141 | 100% |  |  | Eng.Labour [29.16 h]; Street Lighting Feeder pillars, work shall include earthing for the lighting pillars. | 0.00124877130156673 | Eng | SL | Eng | SUB.C |
| DMM2-Eng-PQ-1078 |  | Review & Approval for SL Earthing Materials | 4d | 2026-02-02 A | 2026-02-05 A | DMM2-Eng-PQ-0145 | 100% |  |  | Eng.Labour [29.16 h] |  | Eng | SL | Eng |  |
|  | Landscape | **Landscape Works** |  | 2025-10-24 | 2026-05-16 |  |  |  |  |  |  |  |  |  |  |
| DMM2-Eng-PQ-1118 |  | Review & Approval for Geotextile Layers Materials | 6d | 2025-10-24 A | 2025-10-30 A | DMM2-Eng-PQ-08 | 100% | 2025-10-25 | 2025-10-30 | Eng.Labour [43.74 h] |  | Eng | Landscp | Eng |  |
| DMM2-Eng-PQ-1178 |  | Review & Approval Prepare & Submit for Fences (MODON) Materials | 2d | 2025-11-18 A | 2025-11-19 A | DMM2-Eng-PQ-019 | 100% |  |  | Eng.Labour [14.58 h] |  | Eng | Landscp | Eng |  |
| DMM2-Eng-PQ-1158 |  | Review & Approval for Gravel/Stone Mulch Materials | 2d | 2026-01-04 A | 2026-01-05 A | DMM2-Eng-PQ-017 | 100% |  |  | Eng.Labour [14.58 h] |  | Eng | Landscp | Eng |  |
| DMM2-Eng-PQ-1098 |  | Review & Approval for Trees Materials | 3.75d | 2026-02-05 A | 2026-02-09 A | DMM2-Eng-PQ-06, DMM2-Eng-PQ-148 | 100% |  |  | Eng.Labour [27.34 h] |  | Eng | Landscp | Eng |  |
| DMM2-Eng-PQ-1108 |  | Review & Approval for Ornamental Grasses Materials | 4d | 2026-02-05 A | 2026-02-09 A | DMM2-Eng-PQ-07, DMM2-Eng-PQ-1138 | 100% |  |  | Eng.Labour [29.16 h] |  | Eng | Landscp | Eng |  |
| DMM2-Eng-PQ-1128 |  | Review & Approval for Plastic edge Materials | 13d | 2026-02-05 A | 2026-02-21 A | DMM2-Eng-PQ-09 | 100% |  |  | Eng.Labour [94.77 h] |  | Eng | Landscp | Eng |  |
| DMM2-Eng-PQ-1138 |  | Review & Approval for Large Shrubs Materials | 1.75d | 2026-02-05 A | 2026-02-07 A | DMM2-Eng-PQ-010, DMM2-Eng-PQ-1148 | 100% |  |  | Eng.Labour [12.76 h] |  | Eng | Landscp | Eng |  |
| DMM2-Eng-PQ-1148 |  | Review & Approval for Plants Materials | 1.75d | 2026-02-05 A | 2026-02-07 A | DMM2-Eng-PQ-016, DMM2-Eng-PQ-1098 | 100% |  |  | Eng.Labour [12.76 h] |  | Eng | Landscp | Eng |  |
| DMM2-Eng-PQ-1168 |  | Review & Approval for Fences (ZATCA HCIS) Materials | 4d | 2026-05-12 A | 2026-05-16 A | DMM2-Eng-PQ-018 | 100% |  |  | Eng.Labour [29.16 h] |  | Eng | Landscp | Eng |  |
| DMM2-Eng-PQ-1188 |  | Review & Approval for Vehicle Steel Gate Materials | 4d | 2026-05-12 A | 2026-05-16 A | DMM2-Eng-PQ-020 | 100% |  |  | Eng.Labour [29.16 h] |  | Eng | Landscp | Eng |  |
| DMM2-Eng-PQ-1198 |  | Review & Approval for Vehicle and Pedestrian Steel Gate Materials | 4d | 2026-05-12 A | 2026-05-16 A | DMM2-Eng-PQ-021 | 100% |  |  | Eng.Labour [29.16 h] |  | Eng | Landscp | Eng |  |
|  | Guard Room | **Guard Rooms** |  | 2025-10-01 | 2026-11-08 |  |  |  |  |  |  |  |  |  |  |
|  | GR MAT Civil | **Civil & Architecture** |  | 2025-10-20 | 2026-08-13 |  |  |  |  |  |  |  |  |  |  |
| DMM2-Eng-PQ-1208 |  | Review & Approval for Lean Concrete Materials | 2d | 2025-10-20 A | 2025-10-21 A | DMM2-Eng-PQ-022 | 100% |  |  | Eng.Labour [14.58 h] |  | Eng | GRS | Eng |  |
| DMM2-Eng-PQ-1228 |  | Review & Approval for Screed Concrete Materials | 2d | 2025-10-20 A | 2025-10-21 A | DMM2-Eng-PQ-024, DMM2-Eng-PQ-1338 | 100% |  |  | Eng.Labour [14.58 h] |  | Eng | GRS | Eng |  |
| DMM2-Eng-PQ-1238 |  | Review & Approval for Foam Concrete Materials | 2d | 2025-10-20 A | 2025-10-21 A | DMM2-Eng-PQ-025 | 100% |  |  | Eng.Labour [14.58 h] |  | Eng | GRS | Eng |  |
| DMM2-Eng-PQ-1248 |  | Review & Approval for Reinforced Concrete Materials | 2d | 2025-11-13 A | 2025-11-15 A | DMM2-Eng-PQ-026 | 100% |  |  | Eng.Labour [14.58 h] |  | Eng | GRS | Eng |  |
| DMM2-Eng-PQ-1218 |  | Review & Approval for Stone Coping Materials | 3d | 2025-12-04 A | 2025-12-07 A | DMM2-Eng-PQ-023 | 100% |  |  | Eng.Labour [21.87 h] |  | Eng | GRS | Eng |  |
| DMM2-Eng-PQ-1288 |  | Review & Approval for Water proofing Membrane Materials | 3d | 2025-12-04 A | 2025-12-07 A | DMM2-Eng-PQ-030, DMM2-Eng-PQ-1238 | 100% |  |  | Eng.Labour [21.87 h] |  | Eng | GRS | Eng |  |
| DMM2-Eng-PQ-1258 |  | Review & Approval for Vapor Retarders Materials | 3d | 2025-12-09 A | 2025-12-11 A | DMM2-Eng-PQ-027 | 100% |  |  | Eng.Labour [21.87 h] |  | Eng | GRS | Eng |  |
| DMM2-Eng-PQ-1268 |  | Review & Approval for Board Insulation Materials | 3d | 2025-12-09 A | 2025-12-11 A | DMM2-Eng-PQ-028 | 100% |  |  | Eng.Labour [21.87 h] |  | Eng | GRS | Eng |  |
| DMM2-Eng-PQ-1358 |  | Review & Approval for Wood Doors Materials | 2d | 2026-01-10 A | 2026-01-11 A | DMM2-Eng-PQ-037, DMM2-Eng-PQ-1348 | 100% |  |  | Eng.Labour [14.58 h] |  | Eng | GRS | Eng |  |
| DMM2-Eng-PQ-1318 |  | Review & Approval for gypsum Board Suspended Ceiling Materials | 1d | 2026-01-19 A | 2026-01-19 A | DMM2-Eng-PQ-033, DMM2-Eng-PQ-1268 | 100% |  |  | Eng.Labour [7.29 h] |  | Eng | GRS | Eng |  |
| DMM2-Eng-PQ-1368 |  | Review & Approval for Aluminum Windows Materials | 6d | 2026-04-22 A | 2026-04-28 A | DMM2-Eng-PQ-038 | 100% |  |  | Eng.Labour [43.74 h] |  | Eng | GRS | Eng |  |
| DMM2-Eng-PQ-1328 |  | Review & Approval for Painting Materials | 7d | 2026-04-28 A | 2026-05-05 A | DMM2-Eng-PQ-034 | 100% |  |  | Eng.Labour [51.03 h] |  | Eng | GRS | Eng |  |
| DMM2-Eng-PQ-1278 |  | Review & Approval for Fluid-Applied Water Proofing Paint Materials | 6d | 2026-05-10 A | 2026-05-16 A | DMM2-Eng-PQ-029 | 100% |  |  | Eng.Labour [43.74 h] |  | Eng | GRS | Eng |  |
| DMM2-Eng-PQ-1348 |  | Review & Approval for Steel Doors Materials | 5d | 2026-05-13 A | 2026-05-18 A | DMM2-Eng-PQ-036 | 100% |  |  | Eng.Labour [36.45 h] |  | Eng | GRS | Eng |  |
| DMM2-Eng-PQ-1298 |  | Review & Approval for Concrete Masonry Materials | 3d | 2026-05-16 A | 2026-05-18 A | DMM2-Eng-PQ-031 | 100% |  |  | Eng.Labour [21.87 h] |  | Eng | GRS | Eng |  |
| DMM2-Eng-PQ-1308 |  | Review & Approval for Porcelain Flooring Tiles Materials | 3d | 2026-08-08 A | 2026-08-10 A | DMM2-Eng-PQ-032, DMM2-Eng-PQ-1298 | 100% |  |  | Eng.Labour [21.87 h] |  | Eng | GRS | Eng |  |
| DMM2-Eng-PQ-1338 |  | Review & Approval for Raised Floor System Materials | 2d | 2026-08-12 A | 2026-08-13 A | DMM2-Eng-PQ-035 | 100% |  |  | Eng.Labour [14.58 h] |  | Eng | GRS | Eng |  |

| ID | WBS | Activity | Duration | Start | Finish | Predecessors | Complete | Total float | Free float | Resources | DMM2 Weekly Progress | Networks & Stations | DMM2 Phases | Weight % | Subcontractors works |
| --- | --- | --- | --- | --- | --- | --- | --- | --- | --- | --- | --- | --- | --- | --- | --- |
|  | GR MAT Mech | **Mechanical** |  | 2025-10-01 | 2026-11-08 |  |  |  |  |  |  |  |  |  |  |
| DMM2-Eng-PQ-1498 |  | Review & Approval for Fire Extinguishers (CO2 & Powder) Materials | 2d | 2025-10-01 A | 2025-10-02 A | DMM2-Eng-PQ-051 | 100% |  |  | Eng.Labour [14.58 h] | Eng | GRS | Eng |  |  |
| DMM2-Eng-PQ-1388 |  | Review & Approval for uPVC Pipes Materials | 2d | 2025-11-11 A | 2025-11-12 A | DMM2-Eng-PQ-040 | 100% |  |  | Eng.Labour [14.58 h] | Eng | GRS | Eng |  |  |
| DMM2-Eng-PQ-1458 |  | Review & Approval for Manhole Materials | 2d | 2025-11-11 A | 2025-11-12 A | DMM2-Eng-PQ-047 | 100% |  |  | Eng.Labour [14.58 h] | Eng | GRS | Eng |  |  |
| DMM2-Eng-PQ-1398 |  | Review & Approval for PPR Pipes Materials | 1d | 2026-01-19 A | 2026-01-19 A | DMM2-Mob-09 | 100% |  |  | Eng.Labour [7.29 h] | Eng | GRS | Eng |  |  |
| DMM2-Eng-PQ-1418 |  | Review & Approval for Scupper Materials | 3d | 2026-07-20 A | 2026-07-22 A | DMM2-Eng-PQ-043 | 100% |  |  | Eng.Labour [21.87 h] | Eng | GRS | Eng |  |  |
| DMM2-Eng-PQ-1378 |  | Review & Approval for Exhaust Axial Fans Materials | 9d | 2026-08-30 A | 2026-09-08 A | DMM2-Eng-PQ-039 | 100% |  |  | Eng.Labour [65.61 h] | Eng | GRS | Eng |  |  |
| DMM2-Eng-PQ-1408 |  | Review & Approval for DX Wall Mounted Split/AC Materials | 6d | 2026-10-24 | 2026-10-29 | DMM2-Eng-PQ-042, DMM2-Eng-PQ-041 |  | 103.32d | 0d | Eng.Labour [43.74 h] | Eng | GRS | Eng |  |  |
| DMM2-Eng-PQ-1428 |  | Review & Approval for Clean out Materials | 4d | 2026-10-24 | 2026-10-27 | DMM2-Eng-PQ-044, DMM2-Eng-PQ-1418, DMM2-Eng-PQ-045 |  | 95.32d | 0d | Eng.Labour [29.16 h] | Eng | GRS | Eng |  |  |
| DMM2-Eng-PQ-1468 |  | Review & Approval for Shower Materials | 6d | 2026-10-24 | 2026-10-29 | DMM2-Eng-PQ-048 |  | 103.32d | 0d | Eng.Labour [43.74 h] | Eng | GRS | Eng |  |  |
| DMM2-Eng-PQ-1478 |  | Review & Approval for Toilet Materials | 6d | 2026-10-26 | 2026-11-01 | DMM2-Eng-PQ-049, DMM2-Eng-MS-378_R |  | 101.32d | 0d | Eng.Labour [43.74 h] | Eng | GRS | Eng |  |  |
| DMM2-Eng-PQ-1438 |  | Review & Approval for Floor Drain Materials | 4d | 2026-10-28 | 2026-11-01 | DMM2-Eng-PQ-045, DMM2-Eng-PQ-1428, DMM2-Eng-PQ-044 |  | 95.32d | 0d | Eng.Labour [29.16 h] | Eng | GRS | Eng |  |  |
| DMM2-Eng-PQ-1488 |  | Review & Approval for Semi Pedestal Sink Materials | 6d | 2026-10-28 | 2026-11-03 | DMM2-Eng-PQ-050, DMM2-Eng-PQ-051 |  | 99.32d | 0d | Eng.Labour [43.74 h] | Eng | GRS | Eng |  |  |
| DMM2-Eng-PQ-1448 |  | Review & Approval for Electrical Water Heater Materials | 6d | 2026-11-02 | 2026-11-08 | DMM2-Eng-PQ-046, DMM2-Eng-PQ-1438 |  | 95.32d | 0d | Eng.Labour [43.74 h] | Eng | GRS | Eng |  |  |
|  | GR MAT Elec | **Electrical** |  | 2025-10-28 | 2026-10-29 |  |  |  |  |  |  |  |  |  |  |
| DMM2-Eng-PQ-1518 |  | Review & Approval for Low Voltage Cable Materials | 2d | 2025-10-28 A | 2025-10-29 A | DMM2-Eng-PQ-053 | 100% |  |  | Eng.Labour [14.58 h] | Eng | GRS | Eng |  |  |
| DMM2-Eng-PQ-1568 |  | Review & Approval for Fire Alarm System Materials | 5d | 2025-12-25 A | 2025-12-30 A | DMM2-Eng-PQ-058, DMM2-Eng-PQ-1558 | 100% |  |  | Eng.Labour [36.45 h] | Eng | GRS | Eng |  |  |
| DMM2-Eng-PQ-1558 |  | Review & Approval for Enclosed Switches and Circuit Breakers Materials | 2d | 2026-01-11 A | 2026-01-12 A | DMM2-Eng-PQ-057, DMM2-Eng-PQ-056 | 100% |  |  | Eng.Labour [14.58 h] | Eng | GRS | Eng |  |  |
| DMM2-Eng-PQ-1508 |  | Review & Approval for Panelboards Materials | 48.25d | 2026-02-25 A | 2026-05-02 A | DMM2-Eng-PQ-052 | 100% |  |  | Eng.Labour [351.73 h]; DB-MGR Panel: 32/100 Ampere, 3P, IP66,60Hz incomer MCCB . For guard room 1; DB-GR Panel: 32/100 Ampere, 3P, IP66,60Hz incomer MCCB .For guard room 2 | Eng | GRS | Eng | 0.000283520326089956 | SUB.C |
| DMM2-Eng-PQ-1528 |  | Review & Approval for Lighting Materials | 5d | 2026-05-07 A | 2026-05-12 A | DMM2-Eng-PQ-054 | 100% |  |  | Eng.Labour [36.45 h] | Eng | GRS | Eng |  |  |
| DMM2-Eng-PQ-1538 |  | Review & Approval for Wiring Devices Materials | 6d | 2026-10-21 | 2026-10-27 | DMM2-Eng-PQ-055, DMM2-Eng-PQ-1518 |  | 105.32d | 0d | Eng.Labour [43.74 h] | Eng | GRS | Eng |  |  |
| DMM2-Eng-PQ-1548 |  | Review & Approval for Ground Wires, Rods, Pits, Clamping Materials | 6d | 2026-10-21 | 2026-10-27 | DMM2-Eng-PQ-056, DMM2-Eng-SD-58, DMM2-Eng-PQ-057 |  | 105.32d | 10d | Eng.Labour [43.74 h] | Eng | GRS | Eng |  |  |
| DMM2-Eng-PQ-1578 |  | Review & Approval for Data and Voice System Materials | 6d | 2026-10-21 | 2026-10-27 | DMM2-Eng-PQ-059, DMM2-Eng-PQ-1568 |  | 105.32d | 10d | Eng.Labour [43.74 h] | Eng | GRS | Eng |  |  |
| DMM2-Eng-PQ-1588 |  | Review & Approval for Data Cabinet Materials | 6d | 2026-10-21 | 2026-10-27 | DMM2-Eng-PQ-060 |  | 103.32d | 0d | Eng.Labour [43.74 h] | Eng | GRS | Eng |  |  |
| DMM2-Eng-PQ-1598 |  | Review & Approval for Data/ Voice RJ45 Outlet Materials | 6d | 2026-10-21 | 2026-10-27 | DMM2-Eng-PQ-061 |  | 105.32d | 2d | Eng.Labour [43.74 h] | Eng | GRS | Eng |  |  |
| DMM2-Eng-PQ-1608 |  | Review & Approval for PC Workstation Materials | 6d | 2026-10-24 | 2026-10-29 | DMM2-Eng-PQ-062 |  | 103.32d | 0d | Eng.Labour [43.74 h] | Eng | GRS | Eng |  |  |
| DMM2-Eng-PQ-1618 |  | Review & Approval for 50 inch Screen Materials | 6d | 2026-10-24 | 2026-10-29 | DMM2-Eng-PQ-063 |  | 103.32d | 0d | Eng.Labour [43.74 h] | Eng | GRS | Eng |  |  |

| ID | WBS | Activity | Duration | Start | Finish | Predecessors | Complete | Planned start | Planned finish | Resources | DMM2 Weekly Progress | Networks & Stations | DMM2 Phases | UNASCO |
| --- | --- | --- | --- | --- | --- | --- | --- | --- | --- | --- | --- | --- | --- | --- |
|  | MSs | **Method Statements** |  | 2025-08-28 | 2026-09-26 |  |  |  |  |  |  |  |  |  |
|  | 2 | **Submittals & Approvals** |  | 2025-08-28 | 2026-09-26 |  |  |  |  |  |  |  |  |  |
|  | Site Grading | **Earth & Road Works** |  | 2025-09-14 | 2025-09-30 |  |  |  |  |  |  |  |  |  |
| DMM2-Eng-MS-68 |  | Prepare & Submit for Earth & Road Layers Application | 7d | 2025-09-14 A | 2025-09-21 A | DMM2-Eng-SD-01 SS | 100% |  |  | Eng.Labour [51.03 h] | Eng | Roads | Eng |  |
| DMM2-Eng-MS-78 |  | Review & Approval | 5d | 2025-09-25 A | 2025-09-30 A | DMM2-Eng-MS-68 | 100% |  |  | Eng.Labour [36.45 h] | Eng | Roads | Eng |  |
|  | Landscape | **Landscape Works** |  | 2025-12-14 | 2026-01-18 |  |  |  |  |  |  |  |  |  |
| DMM2-Eng-MS-88 |  | Prepare & Submit (Components Installation, Trees, Fences & Gates, etc..) | 29.7d | 2025-12-14 A | 2026-01-17 A | DMM2-Eng-MS-68 SS | 100% |  |  | Eng.Labour [216.51 h] | Eng | Landscp | Eng |  |
| DMM2-Eng-MS-98 |  | Review & Approval | 18.33d | 2025-12-28 A | 2026-01-18 A | DMM2-Eng-MS-88 | 100% |  |  | Eng.Labour [133.65 h] | Eng | Landscp | Eng |  |
|  | Guard Room | **Guard Rooms** |  | 2025-09-30 | 2026-09-24 |  |  |  |  |  |  |  |  |  |
|  | 1 | **Civil & Architecture** |  | 2025-09-30 | 2025-10-15 |  |  |  |  |  |  |  |  |  |
| DMM2-Eng-MS-108 |  | Prepare & Submit (Earthwork, Concrete, Finishes) | 7d | 2025-09-30 A | 2025-10-07 A | DMM2-Eng-MS-88 | 100% |  |  | Eng.Labour [51.03 h] | Eng | GRS | Eng |  |
| DMM2-Eng-MS-118 |  | Review & Approval | 7d | 2025-10-08 A | 2025-10-15 A | DMM2-Eng-MS-108, DMM2-Eng-MS-98 | 100% |  |  | Eng.Labour [51.03 h] | Eng | GRS | Eng |  |
|  | 3 | **Mechanical** |  | 2026-05-17 | 2026-05-31 |  |  |  |  |  |  |  |  |  |
| DMM2-Eng-MS-348 |  | Prepare & Submit (Components Installation) & Testing | 0.63d | 2026-05-17 A | 2026-05-17 A | DMM2-Eng-MS-108 SS | 100% |  |  | Eng.Labour [4.57 h] | Eng | GRS | Eng |  |
| DMM2-Eng-MS-358 |  | Review & Approval | 0.94d | 2026-05-31 A | 2026-05-31 A | DMM2-Eng-MS-348 | 100% |  |  | Eng.Labour [6.86 h] | Eng | GRS | Eng |  |
|  | 2 | **Electrical** |  | 2025-12-08 | 2026-09-24 |  |  |  |  |  |  |  |  |  |
| DMM2-Eng-MS-368 |  | Prepare & Submit (Components Installation) & Testing | 56.77d | 2025-12-08 A | 2026-02-11 A | DMM2-Eng-MS-348 SS | 100% |  |  | Eng.Labour [413.86 h] | Eng | GRS | Eng |  |
| DMM2-Eng-MS-378 |  | Review & Approval (70.11% Completed) | 225d | 2025-12-10 A | 2026-09-15 A | DMM2-Eng-MS-368 | 100% |  |  | Eng.Labour [1155.05 h] | Eng | GRS | Eng |  |
| DMM2-Eng-MS-378_R |  | Review & Approval(Rem) | 1d | 2026-09-20 A | 2026-09-24 A | DMM2-Eng-MS-368, DMM2-Eng-MS-378 | 100% | 2026-09-16 | 2026-09-16 | Eng.Labour [492.43 h] | Eng | GRS | Eng |  |
|  | SDS | **Wet Networks & Stations** |  | 2025-08-28 | 2026-09-26 |  |  |  |  |  |  |  |  |  |
|  | Sewer | **Sewerage Network** |  | 2025-09-08 | 2025-09-30 |  |  |  |  |  |  |  |  |  |
| DMM2-Eng-MS-128 |  | Prepare & Submit | 13d | 2025-09-08 A | 2025-09-22 A | DMM2-Eng-MS-368 | 100% |  |  | Eng.Labour [94.77 h] | Eng | Sew | Eng | EN.UNSC |
| DMM2-Eng-MS-138 |  | Review & Approval | 7d | 2025-09-22 A | 2025-09-30 A | DMM2-Eng-MS-128, DMM2-Eng-MS-78, DMM2-Eng-MS-358 | 100% |  |  | Eng.Labour [51.03 h] | Eng | Sew | Eng | EN.UNSC |
|  | Storm | **Storm Network** |  | 2025-08-28 | 2025-09-22 |  |  |  |  |  |  |  |  |  |
| DMM2-Eng-MS-158 |  | Review & Approval | 7d | 2025-08-28 A | 2025-09-04 A | DMM2-Eng-MS-148, DMM2-Eng-MS-118 | 100% |  |  | Eng.Labour [51.03 h] | Eng | Storm | Eng | EN.UNSC |
| DMM2-Eng-MS-148 |  | Prepare & Submit | 13d | 2025-09-08 A | 2025-09-22 A | DMM2-Eng-MS-128 | 100% |  |  | Eng.Labour [94.77 h] | Eng | Storm | Eng | EN.UNSC |

| ID | WBS | Activity | Duration | Start | Finish | Predecessors | Complete | Planned start | Planned finish | Resources | DMM2 Weekly Progress | Networks & Stations | DMM2 Phases | UNASCO |
| --- | --- | --- | --- | --- | --- | --- | --- | --- | --- | --- | --- | --- | --- | --- |
|  | Potable | **Potable Network** |  | 2025-09-01 | 2025-09-22 |  |  |  |  |  |  |  |  |  |
| DMM2-Eng-MS-178 |  | Review & Approval | 5d | 2025-09-01 A | 2025-09-06 A | DMM2-Eng-MS-168, DMM2-Eng-MS-138 | 100% |  |  | Eng.Labour [36.45 h] | Eng | Potable | Eng | EN.UNSC |
| DMM2-Eng-MS-168 |  | Prepare & Submit | 13d | 2025-09-08 A | 2025-09-22 A | DMM2-Eng-MS-148 | 100% |  |  | Eng.Labour [94.77 h] | Eng | Potable | Eng | EN.UNSC |
|  | TSE | **TSE Network** |  | 2025-09-01 | 2025-09-22 |  |  |  |  |  |  |  |  |  |
| DMM2-Eng-MS-198 |  | Review & Approval | 5d | 2025-09-01 A | 2025-09-06 A | DMM2-Eng-MS-188 | 100% |  |  | Eng.Labour [36.45 h] | Eng | TSE | Eng | EN.UNSC |
| DMM2-Eng-MS-188 |  | Prepare & Submit | 13d | 2025-09-08 A | 2025-09-22 A | DMM2-Eng-MS-168 SS | 100% |  |  | Eng.Labour [94.77 h] | Eng | TSE | Eng | EN.UNSC |
|  | Fire Fighting | **Fire Fighting Network** |  | 2025-09-01 | 2025-09-22 |  |  |  |  |  |  |  |  |  |
| DMM2-Eng-MS-218 |  | Review & Approval | 7d | 2025-09-01 A | 2025-09-08 A | DMM2-Eng-MS-208 | 100% |  |  | Eng.Labour [51.03 h] | Eng | Fire | Eng | EN.UNSC |
| DMM2-Eng-MS-208 |  | Prepare & Submit | 13d | 2025-09-08 A | 2025-09-22 A | DMM2-Eng-MS-188 SS | 100% |  |  | Eng.Labour [94.77 h] | Eng | Fire | Eng | EN.UNSC |
|  | Pot Pump St. | **Potable Water Pump Station** |  | 2025-12-13 | 2026-09-26 |  |  |  |  |  |  |  |  |  |
| DMM2-Eng-MS-228 |  | Prepare & Submit (90.63% Completed) | 223d | 2025-12-13 A | 2026-09-15 A | DMM2-Eng-MS-208 | 100% |  |  | Eng.Labour [1479.9 h] | Eng | Pump | Eng |  |
| DMM2-Eng-MS-238 |  | Review & Approval (90.63% Completed) | 222d | 2025-12-14 A | 2026-09-15 A | DMM2-Eng-MS-158, DMM2-Eng-MS-228 SS | 100% |  |  | Eng.Labour [1473.3 h] | Eng | Pump | Eng |  |
| DMM2-Eng-MS-238_R |  | Review & Approval(Rem) | 1d | 2026-09-20 A | 2026-09-22 A | DMM2-Eng-MS-158, DMM2-Eng-MS-228_R SS, DMM2-Eng-MS-238 | 100% | 2026-09-16 | 2026-09-16 | Eng.Labour [152.32 h] | Eng | Pump | Eng |  |
| DMM2-Eng-MS-228_R |  | Prepare & Submit(Rem) | 1d | 2026-09-23 A | 2026-09-26 A | DMM2-Eng-MS-208, DMM2-Eng-MS-228 | 100% | 2026-09-16 | 2026-09-16 | Eng.Labour [153 h] | Eng | Pump | Eng |  |
|  | Sewer Lift St. | **Sewer Lift Station** |  | 2025-12-13 | 2026-09-17 |  |  |  |  |  |  |  |  |  |
| DMM2-Eng-MS-248 |  | Prepare & Submit (90.63% Completed) | 223d | 2025-12-13 A | 2026-09-15 A | DMM2-Eng-MS-228 SS | 100% |  |  | Eng.Labour [1479.9 h] | Eng | Lift | Eng |  |
| DMM2-Eng-MS-258 |  | Review & Approval (90.63% Completed) | 222d | 2025-12-14 A | 2026-09-15 A | DMM2-Eng-MS-198, DMM2-Eng-MS-178, DMM2-Eng-MS-248 SS | 100% |  |  | Eng.Labour [1473.3 h] | Eng | Lift | Eng |  |
| DMM2-Eng-MS-248_R |  | Prepare & Submit(Rem) | 1d | 2026-09-17 A | 2026-09-17 A | DMM2-Eng-MS-228_R SS, DMM2-Eng-MS-248, DMM2-Eng-MS-238_R | 100% |  |  | Eng.Labour [153 h] | Eng | Lift | Eng |  |
| DMM2-Eng-MS-258_R |  | Review & Approval(Rem) | 1d | 2026-09-17 A | 2026-09-17 A | DMM2-Eng-MS-198, DMM2-Eng-MS-178, DMM2-Eng-MS-248_R SS, DMM2-Eng-MS-258 | 100% |  |  | Eng.Labour [152.32 h] | Eng | Lift | Eng |  |
|  | 1 | **Dry Networks** |  | 2025-10-04 | 2025-10-21 |  |  |  |  |  |  |  |  |  |
|  | MV | **Medium Voltage Network** |  | 2025-10-04 | 2025-10-21 |  |  |  |  |  |  |  |  |  |
| DMM2-Eng-MS-268 |  | Prepare & Submit | 5d | 2025-10-04 A | 2025-10-08 A | DMM2-Eng-MS-208 | 100% |  |  | Eng.Labour [36.45 h] | Eng | MV | Eng |  |
| DMM2-Eng-MS-278 |  | Review & Approval | 10d | 2025-10-11 A | 2025-10-21 A | DMM2-Eng-MS-268, DMM2-Eng-MS-218 | 100% |  |  | Eng.Labour [72.9 h] | Eng | MV | Eng |  |
|  | LV | **Low Voltage Network** |  | 2025-10-04 | 2025-10-21 |  |  |  |  |  |  |  |  |  |
| DMM2-Eng-MS-288 |  | Prepare & Submit | 5d | 2025-10-04 A | 2025-10-08 A | DMM2-Eng-MS-268 | 100% |  |  | Eng.Labour [36.45 h] | Eng | LV | Eng |  |
| DMM2-Eng-MS-298 |  | Review & Approval | 10d | 2025-10-11 A | 2025-10-21 A | DMM2-Eng-MS-288 | 100% |  |  | Eng.Labour [72.9 h] | Eng | LV | Eng |  |

| ID | WBS | Activity | Duration | Start | Finish | Predecessors | Complete | Total float | Free float | Resources | DMM2 Weekly Progress | Networks & Stations | DMM2 Phases | UNASCO |
| --- | --- | --- | --- | --- | --- | --- | --- | --- | --- | --- | --- | --- | --- | --- |
|  | Telecom | **Telecommunication Network** |  | 2025-10-04 | 2025-10-21 |  |  |  |  |  |  |  |  |  |
| DMM2-Eng-MS-308 |  | Prepare & Submit | 5d | 2025-10-04 A | 2025-10-08 A | DMM2-Eng-MS-288 SS | 100% |  |  | Eng.Labour [36.45 h] | Eng | Telecom | Eng |  |
| DMM2-Eng-MS-318 |  | Review & Approval | 10d | 2025-10-11 A | 2025-10-21 A | DMM2-Eng-MS-308 | 100% |  |  | Eng.Labour [72.9 h] | Eng | Telecom | Eng |  |
|  | SL | **Street Lighting** |  | 2025-10-04 | 2025-10-21 |  |  |  |  |  |  |  |  |  |
| DMM2-Eng-MS-328 |  | Prepare & Submit | 5d | 2025-10-04 A | 2025-10-08 A | DMM2-Eng-MS-308 | 100% |  |  | Eng.Labour [36.45 h] | Eng | SL | Eng |  |
| DMM2-Eng-MS-338 |  | Review & Approval | 10d | 2025-10-11 A | 2025-10-21 A | DMM2-Eng-MS-328, DMM2-Eng-MS-318, DMM2-Eng-MS-298, DMM2-Eng-MS-278 | 100% |  |  | Eng.Labour [72.9 h] | Eng | SL | Eng |  |
|  | Procurement | **Procurement** |  | 2025-09-25 | 2026-11-10 |  |  |  |  |  |  |  |  |  |
|  | PR & PO | **PR & PO** |  | 2025-09-25 | 2026-11-10 |  |  |  |  |  |  |  |  |  |
|  | Site Grading | **Earth & Road Works** |  | 2025-10-09 | 2026-11-10 |  |  |  |  |  |  |  |  |  |
| DMM2-Proc-PO-04 |  | PR & PO for Subgrade Materials | 6d | 2025-10-09 A | 2025-10-15 A | DMM2-Eng-PQ-178, DMM2-Mob-012, DMM2-Eng-SD-02 | 100% |  |  |  | Proc | Roads | Proc |  |
| DMM2-Proc-PO-02 |  | PR & PO for Agg. Base Coarse | 4.37d | 2025-10-16 A | 2025-10-21 A | DMM2-Eng-PQ-158, DMM2-Mob-012, DMM2-Eng-SD-02 | 100% |  |  |  | Proc | Roads | Proc |  |
| DMM2-Proc-PO-01 |  | PR & PO for Embankment & Backfilling Materials | 6d | 2025-10-18 A | 2025-10-23 A | DMM2-Eng-PQ-148, DMM2-Mob-012, DMM2-Eng-SD-02 | 100% |  |  |  | Proc | Roads | Proc |  |
| DMM2-Proc-PO-03 |  | PR & PO for Asphalt Materials | 6d | 2025-11-12 A | 2025-11-18 A | DMM2-Eng-PQ-168, DMM2-Mob-012, DMM2-Eng-SD-02 | 100% |  |  |  | Proc | Roads | Proc |  |
| DMM2-Proc-PO-06 |  | PR & PO for Interlock Materials | 2d | 2026-02-01 A | 2026-02-02 A | DMM2-Eng-PQ-198, DMM2-Mob-012, DMM2-Eng-SD-02, DMM2-Proc-PO-05 | 100% |  |  |  | Proc | Roads | Proc |  |
| DMM2-Proc-PO-08 |  | PR & PO for Wheels Stopper (precast concrete) Materials | 2d | 2026-02-04 A | 2026-02-05 A | DMM2-Eng-PQ-218, DMM2-Mob-012, DMM2-Eng-SD-02 | 100% |  |  |  | Proc | Roads | Proc |  |
| DMM2-Proc-PO-148 |  | PR & PO for Concrete Materials | 4d | 2026-02-04 A | 2026-02-08 A | DMM2-Eng-PQ-1928, DMM2-Mob-012, DMM2-Eng-SD-02 | 100% |  |  |  | Proc | Roads | Proc |  |
| DMM2-Proc-PO-05 |  | PR & PO for Curbstone Materials | 2d | 2026-02-05 A | 2026-02-07 A | DMM2-Eng-PQ-188, DMM2-Mob-012, DMM2-Eng-SD-02, DMM2-Proc-PO-08 | 100% |  |  |  | Proc | Roads | Proc |  |
| DMM2-Proc-PO-09 |  | PR & PO for Traffic Signs Materials | 2d | 2026-10-21 | 2026-10-22 | DMM2-Eng-PQ-228, DMM2-Mob-012, DMM2-Eng-SD-02, DMM2-Proc-PO-148, DMM2-Proc-PO-03 |  | 107.32d | 0d |  | Proc | Roads | Proc |  |
| DMM2-Proc-PO-07 |  | PR & PO for Pavement Markings Materials | 2d | 2026-10-24 | 2026-10-25 | DMM2-Eng-PQ-208, DMM2-Mob-012, DMM2-Eng-SD-02, DMM2-Proc-PO-06, DMM2-Proc-PO-09, DMM2-Proc-PO-01 |  | 107.32d | 12d |  | Proc | Roads | Proc |  |
| DMM2-Proc-PO-010 |  | PR & PO for ground Mounted Information Signs Materials | 2d | 2026-11-09 | 2026-11-10 | DMM2-Eng-PQ-238, DMM2-Mob-012, DMM2-Eng-SD-02, DMM2-Proc-PO-0100, DMM-Mil-4, DMM2-Proc-PO-07, DMM2-Proc-PO-01 |  | 95.32d |  |  | Proc | Roads | Proc |  |
|  | Wet | **Wet Networks & Stations** |  | 2025-09-25 | 2026-11-05 |  |  |  |  |  |  |  |  |  |
|  | Storm | **Storm Network** |  | 2025-10-14 | 2025-12-28 |  |  |  |  |  |  |  |  |  |
| DMM2-Proc-PO-011 |  | PR & PO for GRP Pipes Materials | 4d | 2025-10-14 A | 2025-10-19 A | DMM2-Eng-PQ-248, DMM2-Eng-SD-09 | 100% |  |  |  | Proc | Storm | Proc | PR.UNSC |
| DMM2-Proc-PO-012 |  | PR & PO for Steel Reinforcement Materials | 2.87d | 2025-10-27 A | 2025-10-29 A | DMM2-Eng-PQ-258, DMM2-Eng-SD-09 | 100% |  |  |  | Proc | Storm | Proc | PR.UNSC |
| DMM2-Proc-PO-015 |  | PR & PO for uPVC Pipes Materials | 6d | 2025-10-27 A | 2025-11-03 A | DMM2-Eng-PQ-288, DMM2-Eng-SD-09, DMM2-Proc-PO-011 | 100% |  |  |  | Proc | Storm | Proc | PR.UNSC |
| DMM2-Proc-PO-013 |  | PR & PO for Inlet Manholes Materials | 2d | 2025-12-27 A | 2025-12-28 A | DMM2-Eng-PQ-268, DMM2-Eng-SD-09, DMM2-Proc-PO-011 | 100% |  |  |  | Proc | Storm | Proc | PR.UNSC |
| DMM2-Proc-PO-014 |  | PR & PO for Concrete Chambers & Catch Basin Materials | 2d | 2025-12-27 A | 2025-12-28 A | DMM2-Eng-PQ-278, DMM2-Eng-SD-09 | 100% |  |  |  | Proc | Storm | Proc | PR.UNSC |

| ID | WBS | Activity | Duration | Start | Finish | Predecessors | Complete | Planned start | Planned finish | Total float | Free float | DMM2 Weekly Progress | Networks & Stations | DMM2 Phases | UNASCO |
| --- | --- | --- | --- | --- | --- | --- | --- | --- | --- | --- | --- | --- | --- | --- | --- |
|  | Sewer | **Sewerage Network** |  | 2025-10-12 | 2026-10-22 |  |  |  |  |  |  |  |  |  |  |
| DMM2-Proc-PO-016 |  | PR & PO for HDPE Pipes Materials | 6d | 2025-10-12 A | 2025-10-18 A | DMM2-Eng-PQ-298, DMM2-Eng-SD-08 | 100% |  |  |  |  | Proc | Sew | Proc | PR.UNSC |
| DMM2-Proc-PO-018 |  | PR & PO for Valves Materials | 1.75d | 2026-02-01 A | 2026-02-02 A | DMM2-Eng-PQ-318, DMM2-Eng-SD-08, DMM2-Proc-PO-016 | 100% |  |  |  |  | Proc | Sew | Proc | PR.UNSC |
| DMM2-Proc-PO-017 |  | PR & PO for Valves Chambers Materials | 2d | 2026-04-09 A | 2026-04-11 A | DMM2-Eng-PQ-308, DMM2-Eng-SD-08, DMM2-Proc-PO-018 | 100% |  |  |  |  | Proc | Sew | Proc | PR.UNSC |
| DMM2-Proc-PO-019 |  | PR & PO for Discharge Chamber Materials | 2d | 2026-10-21 | 2026-10-22 | DMM2-Eng-PQ-328, DMM2-Eng-SD-08, DMM2-Proc-PO-017, DMM2-Proc-PO-011 |  |  |  | 111.32d |  | Proc | Sew | Proc | PR.UNSC |
|  | Potable | **Potable Network** |  | 2025-10-12 | 2026-04-11 |  |  |  |  |  |  |  |  |  |  |
| DMM2-Proc-PO-020 |  | PR & PO for HDPE Pipes Materials | 6d | 2025-10-12 A | 2025-10-19 A | DMM2-Eng-PQ-338, DMM2-Eng-SD-012, DMM2-Proc-PO-016, DMM2-Proc-PO-0112 | 100% |  |  |  |  | Proc | Potable | Proc | PR.UNSC |
| DMM2-Proc-PO-023 |  | PR & PO for Flow Meter Materials | 6d | 2025-11-14 A | 2025-11-20 A | DMM2-Eng-PQ-368, DMM2-Eng-SD-012, DMM2-Proc-PO-022 | 100% | 2025-11-15 | 2025-11-20 |  |  | Proc | Potable | Proc | PR.UNSC |
| DMM2-Proc-PO-021 |  | PR & PO for Valves Materials | 1.75d | 2026-02-01 A | 2026-02-02 A | DMM2-Eng-PQ-348, DMM2-Eng-SD-012, DMM2-Proc-PO-020 | 100% |  |  |  |  | Proc | Potable | Proc | PR.UNSC |
| DMM2-Proc-PO-022 |  | PR & PO for Valves Chambers Materials | 2d | 2026-04-09 A | 2026-04-11 A | DMM2-Eng-PQ-358, DMM2-Eng-SD-012, DMM2-Proc-PO-021 | 100% |  |  |  |  | Proc | Potable | Proc | PR.UNSC |
|  | TSE | **TSE Network** |  | 2025-10-11 | 2026-02-28 |  |  |  |  |  |  |  |  |  |  |
| DMM2-Proc-PO-024 |  | PR & PO for HDPE Pipes Materials | 6d | 2025-10-11 A | 2025-10-16 A | DMM2-Eng-PQ-378, DMM2-Eng-SD-014, DMM2-Proc-PO-020, DMM2-Proc-PO-025, DMM2-Proc-PO-026 | 100% |  |  |  |  | Proc | TSE | Proc | PR.UNSC |
| DMM2-Proc-PO-026 |  | PR & PO for Valves Materials | 7d | 2026-01-13 A | 2026-01-20 A | DMM2-Eng-PQ-398, DMM2-Eng-SD-014 | 100% |  |  |  |  | Proc | TSE | Proc | PR.UNSC |
| DMM2-Proc-PO-025 |  | PR & PO for Solenoid Primary Control Valves Materials | 3d | 2026-02-24 A | 2026-02-28 A | DMM2-Eng-PQ-388, DMM2-Eng-SD-014 | 100% |  |  |  |  | Proc | TSE | Proc | PR.UNSC |
|  | Fire Fighting | **Fire Fighting Network** |  | 2025-09-25 | 2026-04-11 |  |  |  |  |  |  |  |  |  |  |
| DMM2-Proc-PO-158 |  | PR & PO for Fire Hydrant Materials | 6d | 2025-09-25 A | 2025-10-02 A | DMM2-Eng-PQ-1728, DMM2-Eng-SD-016, DMM2-Proc-PO-028 | 100% |  |  |  |  | Proc | Fire | Proc | PR.UNSC |
| DMM2-Proc-PO-027 |  | PR & PO for HDPE Pipes Materials | 6d | 2025-10-09 A | 2025-10-16 A | DMM2-Eng-PQ-408, DMM2-Eng-SD-016, DMM2-Proc-PO-024 | 100% |  |  |  |  | Proc | Fire | Proc | PR.UNSC |
| DMM2-Proc-PO-028 |  | PR & PO for Valves Materials | 1.75d | 2026-02-01 A | 2026-02-02 A | DMM2-Eng-PQ-418, DMM2-Eng-SD-016, DMM2-Proc-PO-027 | 100% |  |  |  |  | Proc | Fire | Proc | PR.UNSC |
| DMM2-Proc-PO-029 |  | PR & PO for Valves Chambers Materials | 2d | 2026-04-09 A | 2026-04-11 A | DMM2-Eng-PQ-428, DMM2-Eng-SD-016, DMM2-Proc-PO-158 | 100% |  |  |  |  | Proc | Fire | Proc | PR.UNSC |
|  | Pot Pump St. | **Potable Water Pump Station** |  | 2025-10-29 | 2026-11-05 |  |  |  |  |  |  |  |  |  |  |
|  | 1 | **Civil & Architecture** |  | 2026-10-01 | 2026-10-29 |  |  |  |  |  |  |  |  |  |  |
| DMM2-Proc-PO-031 |  | PR & PO for CMU Walls Materials | 2d | 2026-10-01 A | 2026-10-03 A | DMM2-Eng-PQ-448, DMM2-Eng-SD-018 | 100% | 2026-11-01 | 2026-11-02 |  |  | Proc | Pump | Proc |  |
| DMM2-Proc-PO-030 |  | PR & PO for Stairs Materials | 2d | 2026-10-21 | 2026-10-22 | DMM2-Eng-PQ-438, DMM2-Eng-SD-018 |  |  |  | 105.32d | 0d | Proc | Pump | Proc |  |
| DMM2-Proc-PO-035 |  | PR & PO for Gravel Materials | 2d | 2026-10-21 | 2026-10-22 | DMM2-Eng-PQ-488, DMM2-Eng-SD-018 |  |  |  | 111.32d |  | Proc | Pump | Proc |  |
| DMM2-Proc-PO-032 |  | PR & PO for Stainless Steel Ladder Materials | 2d | 2026-10-24 | 2026-10-25 | DMM2-Eng-PQ-458 SS, DMM2-Eng-SD-018, DMM2-Proc-PO-030, DMM2-Proc-PO-0143, DMM2-Proc-PO-0117 |  |  |  | 105.32d | 0d | Proc | Pump | Proc |  |
| DMM2-Proc-PO-034 |  | PR & PO for Metal Railing Materials | 2d | 2026-10-26 | 2026-10-27 | DMM2-Eng-PQ-478 SS, DMM2-Eng-SD-018, DMM2-Proc-PO-032 |  |  |  | 105.32d | 0d | Proc | Pump | Proc |  |
| DMM2-Proc-PO-036 |  | PR & PO for Handrail Materials | 2d | 2026-10-26 | 2026-10-27 | DMM2-Eng-PQ-498, DMM2-Eng-SD-018, DMM2-Proc-PO-034 SS |  |  |  | 105.32d | 0d | Proc | Pump | Proc |  |
| DMM2-Proc-PO-033 |  | PR & PO for Steel shutter Door Materials | 2d | 2026-10-28 | 2026-10-29 | DMM2-Eng-PQ-468, DMM2-Eng-SD-018, DMM2-Proc-PO-036 |  |  |  | 105.32d |  | Proc | Pump | Proc |  |

| ID | WBS | Activity | Duration | Start | Finish | Predecessors | Complete | Total float | Free float | DMM2 Weekly Progress | Networks & Stations | DMM2 Phases | JANCO |
| --- | --- | --- | --- | --- | --- | --- | --- | --- | --- | --- | --- | --- | --- |
|  | 3 | **Mechanical** |  | 2025-10-29 | 2026-11-05 |  |  |  |  |  |  |  |  |
| DMM2-Proc-PO-037 |  | PR & PO for Water Pumps Materials | 10d | 2025-10-29 A | 2025-11-09 A | DMM2-Eng-PQ-508, DMM2-Eng-SD-018 | 100% |  |  | Proc | Pump | Proc | PWPS |
| DMM2-Proc-PO-038 |  | PR & PO for Fire Pumps Materials | 10d | 2025-11-02 A | 2025-11-12 A | DMM2-Eng-PQ-518, DMM2-Eng-SD-018, DMM2-Proc-PO-037 | 100% |  |  | Proc | Pump | Proc | PWPS |
| DMM2-Proc-PO-043 |  | PR & PO for FM200 Supression System Materials | 10d | 2025-11-02 A | 2025-11-13 A | DMM2-Eng-PQ-568, DMM2-Eng-SD-018 | 100% |  |  | Proc | Pump | Proc | PWPS |
| DMM2-Proc-PO-040 |  | PR & PO for OverHead Crane Materials | 2d | 2026-01-06 A | 2026-01-07 A | DMM2-Eng-PQ-538, DMM2-Eng-SD-018, DMM2-Proc-PO-039 | 100% |  |  | Proc | Pump | Proc | PWPS |
| DMM2-Proc-PO-168 |  | PR & PO for Gate Valves Materials | 2d | 2026-01-10 A | 2026-01-11 A | DMM2-Eng-PQ-1788, DMM2-Eng-SD-018, DMM2-Proc-PO-040 | 100% |  |  | Proc | Pump | Proc | PWPS |
| DMM2-Proc-PO-178 |  | PR & PO for Electromagnetic Flow Meters | 7.99d | 2026-01-17 A | 2026-01-26 A | DMM2-Eng-PQ-1808, DMM2-Eng-SD-018, DMM2-Eng-PQ-628 | 100% |  |  | Proc | Pump | Proc | PWPS |
| DMM2-Proc-PO-039 |  | PR & PO for Butterfly Valve Materials | 1d | 2026-01-26 A | 2026-01-26 A | DMM2-Eng-PQ-528, DMM2-Eng-SD-018, DMM2-Proc-PO-038 | 100% |  |  | Proc | Pump | Proc | PWPS |
| DMM2-Proc-PO-042 |  | PR & PO for Sand Trap Louver Materials | 2d | 2026-10-21 | 2026-10-22 | DMM2-Eng-PQ-558, DMM2-Eng-SD-018 |  | 99.32d | 0d | Proc | Pump | Proc | PWPS |
| DMM2-Proc-PO-188 |  | PR & PO for Fans Materials | 2d | 2026-10-21 | 2026-10-22 | DMM2-Eng-PQ-1828, DMM2-Eng-SD-018, DMM2-Eng-PQ-828 |  | 111.32d |  | Proc | Pump | Proc | PWPS |
| DMM2-Proc-PO-198 |  | PR & PO for Louvers Materials | 2d | 2026-10-21 | 2026-10-22 | DMM2-Eng-PQ-1838, DMM2-Eng-SD-018, DMM2-Eng-PQ-1088 |  | 111.32d |  | Proc | Pump | Proc | PWPS |
| DMM2-Proc-PO-050 |  | PR & PO for Trench Drain Materials | 2d | 2026-10-21 | 2026-10-24 | DMM2-Eng-PQ-638, DMM2-Eng-SD-018, DMM2-Proc-PO-168, DMM2-Proc-Delv-2648_R |  | 110.72d |  | Proc | Pump | Proc | PWPS |
| DMM2-Proc-PO-041 |  | PR & PO for Strainers Materials | 2d | 2026-10-24 | 2026-10-25 | DMM2-Eng-PQ-548, DMM2-Eng-SD-018, DMM2-Proc-PO-038, DMM2-Proc-PO-042 |  | 99.32d | 0d | Proc | Pump | Proc | PWPS |
| DMM2-Proc-PO-045 |  | PR & PO for Exhaust Fans Materials | 2d | 2026-10-26 | 2026-10-27 | DMM2-Eng-PQ-588, DMM2-Eng-SD-018, DMM2-Proc-PO-041 |  | 99.32d | 0d | Proc | Pump | Proc | PWPS |
| DMM2-Proc-PO-044 |  | PR & PO for Hose Bibb Materials | 2d | 2026-10-28 | 2026-10-29 | DMM2-Eng-PQ-578, DMM2-Eng-SD-018, DMM2-Eng-PQ-698 |  | 105.32d |  | Proc | Pump | Proc | PWPS |
| DMM2-Proc-PO-046 |  | PR & PO for Chlorine Cylinder Racks Materials | 2d | 2026-10-28 | 2026-10-29 | DMM2-Eng-PQ-598, DMM2-Eng-SD-018, DMM2-Proc-PO-045 |  | 99.32d | 0d | Proc | Pump | Proc | PWPS |
| DMM2-Proc-PO-047 |  | PR & PO for Chlorinators Materials | 2d | 2026-10-31 | 2026-11-01 | DMM2-Eng-PQ-608, DMM2-Eng-SD-018, DMM2-Proc-PO-046 |  | 99.32d | 0d | Proc | Pump | Proc | PWPS |
| DMM2-Proc-PO-048 |  | PR & PO for Discharge Line Analyzer Materials | 2d | 2026-11-02 | 2026-11-03 | DMM2-Eng-PQ-618, DMM2-Eng-SD-018, DMM2-Proc-PO-047 |  | 99.32d | 0d | Proc | Pump | Proc | PWPS |
| DMM2-Proc-PO-049 |  | PR & PO for Emergency shower Materials | 2d | 2026-11-04 | 2026-11-05 | DMM2-Eng-PQ-628, DMM2-Eng-SD-018, DMM2-Proc-PO-048, DMM2-Eng-PQ-1808 |  | 99.32d |  | Proc | Pump | Proc | PWPS |
|  | 2 | **Electrical** |  | 2026-10-21 | 2026-10-22 |  |  |  |  |  |  |  |  |
| DMM2-Proc-PO-051 |  | PR & PO for Switches and Circuit Breakers Materials | 2d | 2026-10-21 | 2026-10-22 | DMM2-Eng-PQ-1848, DMM2-Eng-SD-018, DMM2-Eng-PQ-1088 |  | 111.32d |  | Proc | Pump | Proc | PWPS |
|  | Sewer Lift St. | **Sewer Lift Station** |  | 2025-10-26 | 2026-10-27 |  |  |  |  |  |  |  |  |
|  | 1 | **Civil & Architecture** |  | 2026-10-21 | 2026-10-27 |  |  |  |  |  |  |  |  |
| DMM2-Proc-PO-052 |  | PR & PO for Metal Ladders Materials | 2d | 2026-10-21 | 2026-10-22 | DMM2-Eng-PQ-658, DMM2-Eng-SD-020 |  | 107.32d | 0d | Proc | Lift | Proc |  |
| DMM2-Proc-PO-054 |  | PR & PO for Internal painting (Acrylic) Materials | 2d | 2026-10-24 | 2026-10-25 | DMM2-Eng-PQ-678, DMM2-Eng-SD-020, DMM2-Proc-PO-052, DMM2-Proc-PO-097, DMM2-Eng-PQ-698 |  | 109.32d |  | Proc | Lift | Proc |  |
| DMM2-Proc-PO-055 |  | PR & PO for Signages Materials | 2d | 2026-10-24 | 2026-10-25 | DMM2-Eng-PQ-688, DMM2-Eng-SD-020, DMM2-Proc-PO-052, DMM2-Eng-PQ-1078 |  | 107.32d | 0d | Proc | Lift | Proc |  |
| DMM2-Proc-PO-053 |  | PR & PO for Metal Covers Materials | 2d | 2026-10-26 | 2026-10-27 | DMM2-Eng-PQ-668, DMM2-Eng-SD-020, DMM2-Proc-PO-055, DMM2-Eng-PQ-1088 |  | 107.32d |  | Proc | Lift | Proc |  |

| ID | WBS | Activity | Duration | Start | Finish | Predecessors | Complete | Total float | DMM2 Weekly Progress | Networks & Stations | DMM2 Phases | JANCO |
| --- | --- | --- | --- | --- | --- | --- | --- | --- | --- | --- | --- | --- |
|  | 3 | **Mechanical** |  | 2025-10-30 | 2026-10-22 |  |  |  |  |  |  |  |
| DMM2-Proc-PO-056 |  | PR & PO for Submersible Pumps Materials | 10d | 2025-10-30 A | 2025-11-10 A | DMM2-Eng-PQ-698, DMM2-Eng-SD-020, DMM2-Eng-PQ-678, DMM2-Eng-SD-018 | 100% |  | Proc | Lift | Proc | SLS |
| DMM2-Proc-PO-057 |  | PR & PO for Double Flanged DI Pipes Materials | 10d | 2025-10-30 A | 2025-11-10 A | DMM2-Eng-PQ-708, DMM2-Eng-SD-020, DMM2-Proc-PO-056 | 100% |  | Proc | Lift | Proc | SLS |
| DMM2-Proc-PO-058 |  | PR & PO for Buried Flanged DI Pipes Materials | 12.15d | 2025-10-30 A | 2025-11-13 A | DMM2-Eng-PQ-718, DMM2-Eng-SD-020, DMM2-Proc-PO-057 | 100% |  | Proc | Lift | Proc | SLS |
| DMM2-Proc-PO-059 |  | PR & PO for Geotextile Membrane Materials | 1d | 2025-11-08 A | 2025-11-09 A | DMM2-Eng-PQ-728, DMM2-Eng-SD-020, DMM2-Proc-PO-058 | 100% |  | Proc | Lift | Proc | SLS |
| DMM2-Proc-PO-064 |  | PR & PO for JIB Crane Materials | 2d | 2025-12-10 A | 2025-12-11 A | DMM2-Eng-PQ-778, DMM2-Eng-SD-020, DMM2-Eng-PQ-768 | 100% |  | Proc | Lift | Proc | SLS |
| DMM2-Proc-PO-062 |  | PR & PO for Odor Control Unit Materials | 2d | 2026-01-01 A | 2026-01-03 A | DMM2-Eng-PQ-758, DMM2-Eng-SD-020, DMM2-Proc-PO-056 | 100% |  | Proc | Lift | Proc | SLS |
| DMM2-Proc-PO-061 |  | PR & PO for Basket Screens Materials | 1d | 2026-01-03 A | 2026-01-03 A | DMM2-Eng-PQ-748, DMM2-Eng-SD-020, DMM2-Proc-PO-060 | 100% |  | Proc | Lift | Proc | SLS |
| DMM2-Proc-PO-060 |  | PR & PO for Non Return Valve (Flap) Materials | 1d | 2026-01-19 A | 2026-01-19 A | DMM2-Eng-PQ-738, DMM2-Eng-SD-020, DMM2-Proc-PO-059 | 100% |  | Proc | Lift | Proc | SLS |
| DMM2-Proc-PO-066 |  | PR & PO for Screening Container Materials | 1.19d | 2026-08-16 A | 2026-08-17 A | DMM2-Eng-PQ-798, DMM2-Eng-SD-020, DMM2-Proc-PO-062 | 100% |  | Proc | Lift | Proc | SLS |
| DMM2-Proc-PO-065 |  | PR & PO for Penstock Materials | 2d | 2026-08-19 A | 2026-08-20 A | DMM2-Eng-PQ-788, DMM2-Eng-SD-020, DMM2-Proc-PO-064, DMM2-Proc-PO-063 | 100% |  | Proc | Lift | Proc | SLS |
| DMM2-Proc-PO-063 |  | PR & PO for Surge Tank Materials | 4.42d | 2026-08-30 A | 2026-09-03 A | DMM2-Eng-PQ-768, DMM2-Eng-SD-020, DMM2-Proc-PO-059, DMM2-Proc-PO-168, DMM2-Eng-PQ-778 | 100% |  | Proc | Lift | Proc | SLS |
| DMM2-Proc-PO-067 |  | PR & PO for Scupper Materials | 2d | 2026-10-21 | 2026-10-22 | DMM2-Eng-PQ-808, DMM2-Eng-SD-020, DMM2-Proc-PO-066, DMM2-Eng-MS-258_R |  | 111.32d | Proc | Lift | Proc | SLS |
|  | 2 | **Electrical** |  | 2025-10-26 | 2026-10-22 |  |  |  |  |  |  |  |
| DMM2-Proc-PO-072 |  | PR & PO for Fuel Pump Materials | 10d | 2025-10-26 A | 2025-11-05 A | DMM2-Eng-PQ-858, DMM2-Eng-SD-020, DMM2-Proc-PO-071 | 100% |  | Proc | Lift | Proc | SLS |
| DMM2-Proc-PO-075 |  | PR & PO for Displacement Rotary Type Pump Materials | 10d | 2025-10-28 A | 2025-11-09 A | DMM2-Eng-PQ-888, DMM2-Eng-SD-020, DMM2-Proc-PO-074 | 100% |  | Proc | Lift | Proc | SLS |
| DMM2-Proc-PO-076 |  | PR & PO for Electrical Hand Holes Materials | 2d | 2025-12-08 A | 2025-12-09 A | DMM2-Eng-PQ-898, DMM2-Eng-SD-020 | 100% |  | Proc | Lift | Proc | SLS |
| DMM2-Proc-PO-080 |  | PR & PO for Process Control Wiring Materials | 1.25d | 2025-12-14 A | 2025-12-15 A | DMM2-Eng-PQ-938, DMM2-Eng-SD-020, DMM2-Proc-PO-079, DMM2-Proc-PO-208, DMM2-Proc-PO-076, DMM2-Proc-PO-077, DMM2-Eng-PQ-918 | 100% |  | Proc | Lift | Proc | SLS |
| DMM2-Proc-PO-068 |  | PR & PO for Motor Control Center (MCC) Materials | 1d | 2025-12-20 A | 2025-12-20 A | DMM2-Eng-PQ-818, DMM2-Eng-SD-020 | 100% |  | Proc | Lift | Proc | SLS |
| DMM2-Proc-PO-070 |  | PR & PO for Low Voltage Cables Materials | 1.75d | 2025-12-23 A | 2025-12-24 A | DMM2-Eng-PQ-838, DMM2-Eng-SD-020, DMM2-Proc-PO-069, DMM2-Proc-PO-080 | 100% |  | Proc | Lift | Proc | SLS |
| DMM2-Proc-PO-079 |  | PR & PO for PLC System Materials | 2d | 2025-12-28 A | 2025-12-29 A | DMM2-Eng-PQ-1908, DMM2-Eng-SD-020 | 100% |  | Proc | Lift | Proc | SLS |
| DMM2-Proc-PO-069 |  | PR & PO for Local Control Panel Materials | 2d | 2025-12-29 A | 2025-12-30 A | DMM2-Eng-PQ-828, DMM2-Eng-SD-020, DMM2-Proc-PO-068, DMM2-Proc-PO-081, DMM2-Proc-PO-0109, DMM2-Eng-PQ-1828, DMM2-Eng-SD-38 | 100% |  | Proc | Lift | Proc | SLS |
| DMM2-Proc-PO-071 |  | PR & PO for Standby Diesel Generator Materials | 4d | 2025-12-29 A | 2026-01-01 A | DMM2-Eng-PQ-848, DMM2-Eng-SD-020, DMM2-Proc-PO-070 | 100% |  | Proc | Lift | Proc | SLS |
| DMM2-Proc-PO-077 |  | PR & PO for Galvanized Steel Pole Materials | 1d | 2025-12-31 A | 2025-12-31 A | DMM2-Eng-PQ-908, DMM2-Eng-SD-020 | 100% |  | Proc | Lift | Proc | SLS |
| DMM2-Proc-PO-208 |  | PR & PO for Addressable Fire Alarm Materials | 1d | 2026-01-03 A | 2026-01-03 A | DMM2-Eng-PQ-1898, DMM2-Eng-SD-020 | 100% |  | Proc | Lift | Proc | SLS |
| DMM2-Proc-PO-073 |  | PR & PO for Automatic Transfer (Switch ATS) Materials | 2d | 2026-01-10 A | 2026-01-11 A | DMM2-Eng-PQ-868, DMM2-Eng-SD-020, DMM2-Proc-PO-072, DMM2-Proc-PO-070 | 100% |  | Proc | Lift | Proc | SLS |
| DMM2-Proc-PO-081 |  | PR & PO for Instrumentation for Process Systems Materials | 1d | 2026-01-26 A | 2026-01-26 A | DMM2-Eng-PQ-948, DMM2-Eng-SD-020 | 100% |  | Proc | Lift | Proc | SLS |
| DMM2-Proc-PO-074 |  | PR & PO for Under Ground Fuel Tank Materials | 1d | 2026-06-02 A | 2026-06-02 A | DMM2-Eng-PQ-878, DMM2-Eng-SD-020, DMM2-Proc-PO-073 | 100% |  | Proc | Lift | Proc | SLS |
| DMM2-Proc-PO-078 |  | PR & PO for Surfaced Mounted Light (LED) Materials | 2d | 2026-10-21 | 2026-10-22 | DMM2-Eng-PQ-918, DMM2-Eng-SD-020, DMM2-Eng-PQ-938 |  | 111.32d | Proc | Lift | Proc | SLS |

| ID | WBS | Activity | Duration | Start | Finish | Predecessors | Complete | Total float | DMM2 Weekly Progress | Networks & Stations | DMM2 Phases |
| --- | --- | --- | --- | --- | --- | --- | --- | --- | --- | --- | --- |
|  | Dry | **Dry Networks** |  | 2025-12-16 | 2026-04-06 |  |  |  |  |  |  |
|  | MV | **Medium Voltage Network** |  | 2025-12-25 | 2026-02-03 |  |  |  |  |  |  |
| DMM2-Proc-PO-082 |  | PR & PO for MV Cables Materials | 2d | 2025-12-25 A | 2025-12-27 A | DMM2-Eng-PQ-958, DMM2-Eng-SD-022 | 100% |  | Proc | MV | Proc |
| DMM2-Proc-PO-084 |  | PR & PO for Unit Substation Materials | 2d | 2026-01-05 A | 2026-01-06 A | DMM2-Eng-PQ-978, DMM2-Eng-SD-022, DMM2-Proc-PO-083 | 100% |  | Proc | MV | Proc |
| DMM2-Proc-PO-085 |  | PR & PO for RMU Materials | 2d | 2026-01-08 A | 2026-01-10 A | DMM2-Eng-PQ-988, DMM2-Eng-SD-022, DMM2-Proc-PO-084 | 100% |  | Proc | MV | Proc |
| DMM2-Proc-PO-083 |  | PR & PO for Straight Joints, Termination Materials | 6.06d | 2026-01-27 A | 2026-02-03 A | DMM2-Eng-PQ-968, DMM2-Eng-SD-022, DMM2-Proc-PO-082 | 100% |  | Proc | MV | Proc |
|  | LV | **Low Voltage Network** |  | 2025-12-24 | 2026-02-12 |  |  |  |  |  |  |
| DMM2-Proc-PO-086 |  | PR & PO for LV Cables Materials | 3d | 2025-12-24 A | 2025-12-27 A | DMM2-Eng-PQ-998, DMM2-Eng-SD-024 | 100% |  | Proc | LV | Proc |
| DMM2-Proc-PO-087 |  | PR & PO for LV Pillars Materials | 8d | 2026-02-04 A | 2026-02-12 A | DMM2-Eng-PQ-1008, DMM2-Eng-SD-024, DMM2-Proc-PO-086 | 100% |  | Proc | LV | Proc |
| DMM2-Proc-PO-209 |  | PR & PO for LV Panels Materials | 8d | 2026-02-04 A | 2026-02-12 A | DMM2-Eng-PQ-2000, DMM2-Eng-SD-024, DMM2-Proc-PO-087 | 100% |  | Proc | LV | Proc |
|  | Telecom | **Telecommunication Network** |  | 2025-12-16 | 2025-12-31 |  |  |  |  |  |  |
| DMM2-Proc-PO-088 |  | PR & PO for HDPE Ducts Materials | 2d | 2025-12-16 A | 2025-12-17 A | DMM2-Eng-PQ-1018, DMM2-Eng-SD-026 | 100% |  | Proc | Telecom | Proc |
| DMM2-Proc-PO-089 |  | PR & PO for Manholes Type 1&2 Materials | 3d | 2025-12-29 A | 2025-12-31 A | DMM2-Eng-PQ-1028, DMM2-Eng-SD-026, DMM2-Proc-PO-088 | 100% |  | Proc | Telecom | Proc |
|  | SL | **Street Lighting** |  | 2025-12-17 | 2026-04-06 |  |  |  |  |  |  |
| DMM2-Proc-PO-092 |  | PR & PO for SL Poles Materials | 5d | 2025-12-17 A | 2025-12-22 A | DMM2-Eng-PQ-1058, DMM2-Eng-SD-028, DMM2-Proc-PO-091 | 100% |  | Proc | SL | Proc |
| DMM2-Proc-PO-091 |  | PR & PO for SL Cables Materials | 3d | 2025-12-24 A | 2025-12-27 A | DMM2-Eng-PQ-1048, DMM2-Eng-SD-028, DMM2-Proc-PO-090 | 100% |  | Proc | SL | Proc |
| DMM2-Proc-PO-093 |  | PR & PO for SL Luminares Materials | 5d | 2025-12-24 A | 2025-12-29 A | DMM2-Eng-PQ-1068, DMM2-Eng-SD-028, DMM2-Proc-PO-092 | 100% |  | Proc | SL | Proc |
| DMM2-Proc-PO-090 |  | PR & PO for SL Pillars Materials | 8d | 2026-02-04 A | 2026-02-12 A | DMM2-Eng-PQ-1038, DMM2-Eng-SD-028 | 100% |  | Proc | SL | Proc |
| DMM2-Proc-PO-094 |  | PR & PO for SL Earthing Materials | 11d | 2026-03-25 A | 2026-04-06 A | DMM2-Eng-PQ-1078, DMM2-Eng-SD-028, DMM2-Proc-PO-093, DMM2-Proc-PO-0141, DMM2-Proc-PO-043, DMM2-Eng-SD-58, DMM2-Eng-SD-38, DMM2-Eng-PQ-1248, DMM2-Eng-SD-020, DMM2-Eng-PQ-1528, DMM2-Eng-PQ-1398 | 100% |  | Proc | SL | Proc |
| DMM2-Proc-PO-095 |  | PR & PO for SL Drawpits Materials | 6d | 2026-03-29 A | 2026-04-04 A | DMM2-Eng-PQ-1088, DMM2-Eng-SD-028, DMM2-Proc-PO-094, DMM2-Proc-PO-0136, DMM2-Proc-PO-0132, DMM2-Proc-PO-0102, DMM2-Proc-PO-0116, DMM2-Proc-PO-0115, DMM2-Proc-PO-099, DMM2-Proc-PO-0101, DMM2-Eng-PQ-1188, DMM2-Eng-PQ-668, DMM2-Eng-SD-38, DMM2-Eng-PQ-1418, DMM2-Eng-PQ-1838, DMM2-Eng-PQ-1368, DMM2-Eng-PQ-1178, DMM2-Eng-PQ-1348, DMM2-Eng-PQ-1848, DMM2-Eng-PQ-1358, DMM2-Eng-PQ-1338, DMM2-Eng-PQ-1168, DMM2-Eng-SD-58, DMM2-Eng-PQ-1558 | 100% |  | Proc | SL | Proc |
|  | Landscape | **Landscape Works** |  | 2025-12-09 | 2026-10-22 |  |  |  |  |  |  |
| DMM2-Proc-PO-098 |  | PR & PO for Geotextile Layers Materials | 2d | 2025-12-09 A | 2025-12-10 A | DMM2-Eng-PQ-1118, DMM2-Eng-SD-04 | 100% |  | Proc | Landscp | Proc |
| DMM2-Proc-PO-0100 |  | PR & PO for Large Shrubs Materials | 2.25d | 2026-02-26 A | 2026-03-01 A | DMM2-Eng-PQ-1138, DMM2-Eng-SD-04 | 100% |  | Proc | Landscp | Proc |
| DMM2-Proc-PO-0101 |  | PR & PO for Plants Materials | 2.25d | 2026-02-26 A | 2026-03-01 A | DMM2-Eng-PQ-1148, DMM2-Eng-SD-04 | 100% |  | Proc | Landscp | Proc |
| DMM2-Proc-PO-0102 |  | PR & PO for Gravel/Stone Mulch Materials | 2.25d | 2026-02-26 A | 2026-03-01 A | DMM2-Eng-PQ-1158, DMM2-Eng-SD-04 | 100% |  | Proc | Landscp | Proc |
| DMM2-Proc-PO-096 |  | PR & PO for Trees Materials | 2.25d | 2026-02-26 A | 2026-03-01 A | DMM2-Eng-PQ-1098, DMM2-Eng-SD-04 | 100% |  | Proc | Landscp | Proc |
| DMM2-Proc-PO-097 |  | PR & PO for Ornamental Grasses Materials | 2.25d | 2026-02-26 A | 2026-03-01 A | DMM2-Eng-PQ-1108, DMM2-Eng-SD-04, DMM2-Eng-PQ-1198 | 100% |  | Proc | Landscp | Proc |
| DMM2-Proc-PO-099 |  | PR & PO for Plastic edge Materials | 2.25d | 2026-02-26 A | 2026-03-01 A | DMM2-Eng-PQ-1128, DMM2-Eng-SD-04 | 100% |  | Proc | Landscp | Proc |
| DMM2-Proc-PO-0103 |  | PR & PO for Fences (ZATCA HCIS) Materials | 2d | 2026-10-21 | 2026-10-22 | DMM2-Eng-PQ-1168, DMM2-Eng-SD-04, DMM2-Proc-PO-098, DMM2-Eng-PQ-1088 |  | 111.32d | Proc | Landscp | Proc |
| DMM2-Proc-PO-0104 |  | PR & PO Prepare & Submit for Fences (MODON) Materials | 2d | 2026-10-21 | 2026-10-22 | DMM2-Eng-PQ-1178, DMM2-Eng-SD-04, DMM2-Eng-PQ-1088 |  | 111.32d | Proc | Landscp | Proc |
| DMM2-Proc-PO-0105 |  | PR & PO for Vehicle Steel Gate Materials | 2d | 2026-10-21 | 2026-10-22 | DMM2-Eng-PQ-1188, DMM2-Eng-SD-04, DMM2-Eng-PQ-1088 |  | 111.32d | Proc | Landscp | Proc |
| DMM2-Proc-PO-0106 |  | PR & PO for Vehicle and Pedestrian Steel Gate Materials | 2d | 2026-10-21 | 2026-10-22 | DMM2-Eng-PQ-1198, DMM2-Eng-SD-04, DMM2-Eng-PQ-1108 |  | 111.32d | Proc | Landscp | Proc |

| ID | WBS | Activity | Duration | Start | Finish | Predecessors | Complete | Planned start | Planned finish | Total float | Free float | DMM2 Weekly Progress | Networks & Stations | DMM2 Phases |
| --- | --- | --- | --- | --- | --- | --- | --- | --- | --- | --- | --- | --- | --- | --- |
|  | Guard Room | **Guard Rooms** |  | 2025-10-24 | 2026-11-10 |  |  |  |  |  |  |  |  |  |
|  | GR MAT Civil | **Civil & Architecture** |  | 2025-10-24 | 2026-10-27 |  |  |  |  |  |  |  |  |  |
| DMM2-Proc-PO-0112 |  | PR & PO for Vapor Retarders Materials | 10d | 2025-10-24 A | 2025-11-04 A | DMM2-Eng-PQ-1258, DMM2-Eng-SD-06 | 100% | 2025-10-25 | 2025-11-04 |  |  | Proc | GRS | Proc |
| DMM2-Proc-PO-0115 |  | PR & PO for Water proofing Membrane Materials | 10d | 2025-10-24 A | 2025-11-04 A | DMM2-Eng-PQ-1288, DMM2-Eng-SD-06 | 100% | 2025-10-25 | 2025-11-04 |  |  | Proc | GRS | Proc |
| DMM2-Proc-PO-0109 |  | PR & PO for Screed Concrete Materials | 10d | 2026-02-02 A | 2026-02-14 A | DMM2-Eng-PQ-1228, DMM2-Eng-SD-06, DMM2-Eng-PQ-1278 | 100% |  |  |  |  | Proc | GRS | Proc |
| DMM2-Proc-PO-0107 |  | PR & PO for Lean Concrete Materials | 1.25d | 2026-02-04 A | 2026-02-05 A | DMM2-Eng-PQ-1208, DMM2-Eng-SD-06 | 100% |  |  |  |  | Proc | GRS | Proc |
| DMM2-Proc-PO-0110 |  | PR & PO for Foam Concrete Materials | 6d | 2026-02-05 A | 2026-02-12 A | DMM2-Eng-PQ-1238, DMM2-Eng-SD-06, DMM2-Eng-PQ-1218 | 100% |  |  |  |  | Proc | GRS | Proc |
| DMM2-Proc-PO-0116 |  | PR & PO for Concrete Masonry Materials | 5.75d | 2026-02-14 A | 2026-02-21 A | DMM2-Eng-PQ-1298, DMM2-Eng-SD-06 | 100% |  |  |  |  | Proc | GRS | Proc |
| DMM2-Proc-PO-0108 |  | PR & PO for Stone Coping Materials | 2d | 2026-10-21 | 2026-10-22 | DMM2-Eng-PQ-1218, DMM2-Eng-SD-06, DMM2-Proc-PO-0107, DMM2-Proc-PO-096, DMM2-Eng-PQ-1238 |  |  |  | 52.32d | 36.36d | Proc | GRS | Proc |
| DMM2-Proc-PO-0114 |  | PR & PO for Fluid-Applied Water Proofing Paint Materials | 2d | 2026-10-21 | 2026-10-22 | DMM2-Eng-PQ-1278, DMM2-Eng-SD-06, DMM2-Eng-PQ-1228 |  |  |  | 45.32d | 4d | Proc | GRS | Proc |
| DMM2-Proc-PO-0117 |  | PR & PO for Porcelain Flooring Tiles Materials | 2d | 2026-10-21 | 2026-10-22 | DMM2-Eng-PQ-1308, DMM2-Eng-SD-06 |  |  |  | 105.32d | 0d | Proc | GRS | Proc |
| DMM2-Proc-PO-0118 |  | PR & PO for gypsum Board Suspended Ceiling Materials | 2d | 2026-10-21 | 2026-10-22 | DMM2-Eng-PQ-1318, DMM2-Eng-SD-06 |  |  |  | 109.32d | 4d | Proc | GRS | Proc |
| DMM2-Proc-PO-0119 |  | PR & PO for Painting Materials | 2d | 2026-10-21 | 2026-10-22 | DMM2-Eng-PQ-1328, DMM2-Eng-SD-06 |  |  |  | 41.32d | 0d | Proc | GRS | Proc |
| DMM2-Proc-PO-0120 |  | PR & PO for Raised Floor System Materials | 2d | 2026-10-21 | 2026-10-22 | DMM2-Eng-PQ-1338, DMM2-Eng-SD-06, DMM2-Eng-PQ-1088 |  |  |  | 111.32d |  | Proc | GRS | Proc |
| DMM2-Proc-PO-0121 |  | PR & PO for Steel Doors Materials | 2d | 2026-10-21 | 2026-10-22 | DMM2-Eng-PQ-1348, DMM2-Eng-SD-06, DMM2-Eng-PQ-1088 |  |  |  | 111.32d |  | Proc | GRS | Proc |
| DMM2-Proc-PO-0122 |  | PR & PO for Wood Doors Materials | 2d | 2026-10-21 | 2026-10-22 | DMM2-Eng-PQ-1358, DMM2-Eng-SD-06, DMM2-Eng-PQ-1088 |  |  |  | 111.32d |  | Proc | GRS | Proc |
| DMM2-Proc-PO-0123 |  | PR & PO for Aluminum Windows Materials | 2d | 2026-10-21 | 2026-10-22 | DMM2-Eng-PQ-1368, DMM2-Eng-SD-06, DMM2-Eng-PQ-1088 |  |  |  | 111.32d |  | Proc | GRS | Proc |
| DMM2-Proc-PO-0111 |  | PR & PO for Reinforced Concrete Materials | 2d | 2026-10-24 | 2026-10-25 | DMM2-Eng-PQ-1248, DMM2-Eng-SD-06, DMM2-Proc-PO-0110, DMM2-Proc-PO-0119, B8.31 23 16.0139, DMM2-Eng-PQ-1078 |  |  |  | 41.32d | 0d | Proc | GRS | Proc |
| DMM2-Proc-PO-0113 |  | PR & PO for Board Insulation Materials | 2d | 2026-10-26 | 2026-10-27 | DMM2-Eng-PQ-1268, DMM2-Eng-SD-06, DMM2-Proc-PO-0111, B8.31 23 16.0141, DMM2-Proc-PO-094 |  |  |  | 103.32d | 0d | Proc | GRS | Proc |
|  | GR MAT Mech | **Mechanical** |  | 2025-12-04 | 2026-11-10 |  |  |  |  |  |  |  |  |  |
| DMM2-Proc-PO-0132 |  | PR & PO for Manhole Materials | 4d | 2025-12-04 A | 2025-12-08 A | DMM2-Eng-PQ-1458, DMM2-Eng-SD-38 | 100% |  |  |  |  | Proc | GRS | Proc |
| DMM2-Proc-PO-0136 |  | PR & PO for Fire Extinguishers (CO2 & Powder) Materials | 3d | 2025-12-06 A | 2025-12-08 A | DMM2-Eng-PQ-1498, DMM2-Eng-SD-38 | 100% |  |  |  |  | Proc | GRS | Proc |
| DMM2-Proc-PO-0125 |  | PR & PO for uPVC Pipes Materials | 5d | 2025-12-14 A | 2025-12-18 A | DMM2-Eng-PQ-1388, DMM2-Eng-SD-38 | 100% |  |  |  |  | Proc | GRS | Proc |
| DMM2-Proc-PO-0130 |  | PR & PO for Floor Drain Materials | 1.91d | 2026-08-30 A | 2026-08-31 A | DMM2-Eng-SD-38, DMM2-Eng-PQ-1088 | 100% |  |  |  |  | Proc | GRS | Proc |
| DMM2-Proc-PO-0124 |  | PR & PO for Exhaust Axial Fans Materials | 2d | 2026-10-21 | 2026-10-22 | DMM2-Eng-PQ-1378, DMM2-Eng-SD-38, DMM2-Eng-PQ-1388 |  |  |  | 111.32d |  | Proc | GRS | Proc |
| DMM2-Proc-PO-0126 |  | PR & PO for PPR Pipes Materials | 2d | 2026-10-21 | 2026-10-22 | DMM2-Eng-PQ-1398, DMM2-Eng-SD-38, DMM2-Proc-PO-0125, DMM2-Eng-PQ-1078 |  |  |  | 109.32d | 6d | Proc | GRS | Proc |
| DMM2-Proc-PO-0128 |  | PR & PO for Scupper Materials | 2d | 2026-10-21 | 2026-10-22 | DMM2-Eng-PQ-1418, DMM2-Eng-SD-38, DMM2-Eng-PQ-1088 |  |  |  | 111.32d |  | Proc | GRS | Proc |
| DMM2-Proc-PO-0129 |  | PR & PO for Clean out Materials | 1d | 2026-10-28 | 2026-10-28 | DMM2-Eng-PQ-1428, DMM2-Eng-SD-38 |  |  |  | 106.32d |  | Proc | GRS | Proc |
| DMM2-Proc-PO-0127 |  | PR & PO for DX Wall Mounted Split/AC Materials | 2d | 2026-10-31 | 2026-11-01 | DMM2-Eng-PQ-1408, DMM2-Eng-SD-38, DMM2-Proc-PO-0126, DMM2-Eng-PQ-1078 |  |  |  | 103.32d |  | Proc | GRS | Proc |
| DMM2-Proc-PO-0133 |  | PR & PO for Shower Materials | 2d | 2026-10-31 | 2026-11-01 | DMM2-Eng-PQ-1468, DMM2-Eng-SD-38, DMM2-Eng-PQ-1088 |  |  |  | 103.32d |  | Proc | GRS | Proc |
| DMM2-Proc-PO-0134 |  | PR & PO for Toilet Materials | 2d | 2026-11-02 | 2026-11-03 | DMM2-Eng-PQ-1478, DMM2-Eng-SD-38, DMM2-Eng-PQ-1088 |  |  |  | 101.32d |  | Proc | GRS | Proc |
| DMM2-Proc-PO-0135 |  | PR & PO for Semi Pedestal Sink Materials | 2d | 2026-11-04 | 2026-11-05 | DMM2-Eng-PQ-1488, DMM2-Eng-SD-38, DMM2-Eng-PQ-1088 |  |  |  | 99.32d |  | Proc | GRS | Proc |
| DMM2-Proc-PO-0131 |  | PR & PO for Electrical Water Heater Materials | 2d | 2026-11-09 | 2026-11-10 | DMM2-Eng-PQ-1448, DMM2-Eng-SD-38, DMM2-Eng-PQ-828 |  |  |  | 95.32d |  | Proc | GRS | Proc |

| ID | WBS | Activity | Duration | Start | Finish | Predecessors | Complete | Planned start | Planned finish | Total float | Free float | Resources | DMM2 Weekly Progress | Networks & Stations | DMM2 Phases | Weight % | DMM2 Zones | UNASCO | Subcontractors works |
| --- | --- | --- | --- | --- | --- | --- | --- | --- | --- | --- | --- | --- | --- | --- | --- | --- | --- | --- | --- |
|  | GR MAT Elec | **Electrical** |  | 2025-12-16 | 2026-11-01 |  |  |  |  |  |  |  |  |  |  |  |  |  |  |
| DMM2-Proc-PO-0138 |  | PR & PO for Low Voltage Cable Materials | 10d | 2025-12-16 A | 2025-12-27 A | DMM2-Eng-PQ-1518, DMM2-Eng-SD-58, DMM2-Eng-PQ-1508 | 100% |  |  |  |  |  | Proc | GRS | Proc |  |  |  |  |
| DMM2-Proc-PO-0141 |  | PR & PO for Ground Wires, Rods, Pits, Clamping Materials | 1.25d | 2025-12-27 A | 2025-12-28 A | DMM2-Eng-SD-58, DMM2-Eng-PQ-056 | 100% |  |  |  |  |  | Proc | GRS | Proc |  |  |  |  |
| DMM2-Proc-PO-0137 |  | PR & PO for Panelboards Materials | 2d | 2026-10-21 | 2026-10-22 | DMM2-Eng-PQ-1508, DMM2-Eng-SD-58, DMM2-Eng-PQ-1518 |  |  |  | 111.32d |  |  | Proc | GRS | Proc |  |  |  |  |
| DMM2-Proc-PO-0139 |  | PR & PO for Lighting Materials | 2d | 2026-10-21 | 2026-10-22 | DMM2-Eng-PQ-1528, DMM2-Eng-SD-58, DMM2-Proc-PO-0138, DMM2-Eng-PQ-1078 |  |  |  | 109.32d | 4d |  | Proc | GRS | Proc |  |  |  |  |
| DMM2-Proc-PO-0142 |  | PR & PO for Enclosed Switches and Circuit Breakers Materials | 2d | 2026-10-21 | 2026-10-22 | DMM2-Eng-PQ-1558, DMM2-Eng-SD-58, DMM2-Eng-PQ-1088 |  |  |  | 111.32d |  |  | Proc | GRS | Proc |  |  |  |  |
| DMM2-Proc-PO-0143 |  | PR & PO for Fire Alarm System Materials | 2d | 2026-10-21 | 2026-10-22 | DMM2-Eng-PQ-1568, DMM2-Eng-SD-58 |  |  |  | 105.32d | 0d |  | Proc | GRS | Proc |  |  |  |  |
| DMM2-Proc-PO-0140 |  | PR & PO for Wiring Devices Materials | 2d | 2026-10-28 | 2026-10-29 | DMM2-Eng-PQ-1538, DMM2-Eng-SD-58, DMM2-Proc-PO-0139, DMM2-Proc-PO-0118, DMM2-Eng-PQ-1078 |  |  |  | 105.32d |  |  | Proc | GRS | Proc |  |  |  |  |
| DMM2-Proc-PO-0145 |  | PR & PO for Data Cabinet Materials | 2d | 2026-10-28 | 2026-10-29 | DMM2-Eng-PQ-1588, DMM2-Eng-SD-58, DMM2-Proc-PO-0141, DMM2-Proc-PO-0113 |  |  |  | 103.32d | 0d |  | Proc | GRS | Proc |  |  |  |  |
| DMM2-Proc-PO-0146 |  | PR & PO for Data/ Voice RJ45 Outlet Materials | 2d | 2026-10-31 | 2026-11-01 | DMM2-Eng-PQ-1598, DMM2-Eng-SD-58, DMM2-Proc-PO-0145 |  |  |  | 103.32d |  |  | Proc | GRS | Proc |  |  |  |  |
| DMM2-Proc-PO-0147 |  | PR & PO for PC Workstation Materials | 2d | 2026-10-31 | 2026-11-01 | DMM2-Eng-PQ-1608, DMM2-Eng-SD-58, DMM2-Proc-PO-0139, DMM2-Eng-PQ-1078 |  |  |  | 103.32d |  |  | Proc | GRS | Proc |  |  |  |  |
| DMM2-Proc-PO-0148 |  | PR & PO for 50 inch Screen Materials | 2d | 2026-10-31 | 2026-11-01 | DMM2-Eng-PQ-1618, DMM2-Eng-SD-58, DMM2-Eng-PQ-1088 |  |  |  | 103.32d |  |  | Proc | GRS | Proc |  |  |  |  |
|  | Mauf. & Delivery | **Manufacturing & Delivery** |  | 2025-10-05 | 2026-11-10 |  |  |  |  |  |  |  |  |  |  |  |  |  |  |
|  | Long Lead | **Long Lead Items** |  | 2025-10-11 | 2026-10-31 |  |  |  |  |  |  |  |  |  |  |  |  |  |  |
|  | Zone 01 | **Zone 01** |  | 2025-10-11 | 2026-10-24 |  |  |  |  |  |  |  |  |  |  |  |  |  |  |
|  | SDS | **Wet Networks & Stations** |  | 2025-10-11 | 2026-10-22 |  |  |  |  |  |  |  |  |  |  |  |  |  |  |
|  | Sewer | **Sewerage Network** |  | 2025-11-24 | 2026-02-16 |  |  |  |  |  |  |  |  |  |  |  |  |  |  |
| DMM2-Proc-Delv-1888 |  | Manuf. & Delivery for GRP Pipes Materials | 28.43d | 2025-11-24 A | 2025-12-27 A | DMM2-Proc-PO-011, B5.33 31 00.02.021 SS, DMM2-Eng-PQ-328 | 100% |  |  |  |  | Labor [347.94 h]; Operator [347.94 h]; Mobile Crane [160 h]; Sew Dia. 150mm Depth: 1.51m - 2.5m; Sew Dia. 200mm Depth: 1.51m - 2.5m; Sew Dia. 200mm Depth: 2.51m - 3.5m; Sew Dia. 200mm Depth: 3.51m - 4.5m | Proc | Sew | Proc | 0.0705546384381917 | Z1 | PR.UNSC | SUB.C |
| DMM2-Proc-Delv-1898 |  | Manuf. & Delivery for Inlet Manholes Materials | 50.97d | 2025-12-20 A | 2026-02-16 A | DMM2-Proc-PO-013, B5.33 05 13.011 SS | 100% |  |  |  |  | Labor [347.94 h]; Operator [347.94 h]; Mobile Crane [160 h]; MH depth 0 - 1.5m; MH depth 1.51 - 2.5m; MH depth 2.51 - 3.5m; MH depth 2.51- 3.5 m with back drop; MH depth 3.51 -4.5m; MH depth 3.51- 4.5 m with back drop | Proc | Sew | Proc | 0.0663771448359379 | Z1 | PR.UNSC | SUB.C |
|  | Storm | **Storm Network** |  | 2025-11-24 | 2026-05-25 |  |  |  |  |  |  |  |  |  |  |  |  |  |  |
| DMM2-Proc-Delv-508 |  | Manuf. & Delivery for GRP Pipes Materials | 34.84d | 2025-11-24 A | 2026-01-03 A | DMM2-Proc-PO-011, B6.33 42 11.021 SS | 100% |  |  |  |  | Labor [347.94 h]; Operator [347.94 h]; Mobile Crane [160 h]; Depth: 1.51m - 2.5m; 1.51m - 2.5m; 2.51m - 3.5m; 3.51m - 4.5m | Proc | Storm | Proc | 0.168521441454442 | Z1 | PR.UNSC | SUB.C |
| DMM2-Proc-Delv-528 |  | Manuf. & Delivery for Inlet Manholes Materials | 62.15d | 2025-12-20 A | 2026-03-07 A | DMM2-Proc-PO-013, B6.33 05 13.011 SS | 100% |  |  |  |  | Labor [434.92 h]; Operator [434.92 h]; Mobile Crane [200 h]; MH depth 1.50 - 2.5m; MH depth 2.51 - 3.5m; MH depth 3.51 - 4.5m; Storm MH depth 2.51 - 3.5m; Storm MH depth 3.51 -4.5m; MH depth 4.51 -5.5m | Proc | Storm | Proc | 0.153863997559652 | Z1 | PR.UNSC | SUB.C |
| DMM2-Proc-Delv-538 |  | Manuf. & Delivery for Catch Basin Materials | 118d | 2025-12-27 A | 2026-05-25 A | DMM2-Proc-PO-014, B6.33 05 63.071 SS | 100% |  |  |  |  | Labor [434.92 h]; Operator [434.92 h]; Mobile Crane [200 h]; Single Catch basin; Double Catch basin | Proc | Storm | Proc | 0.046608235566154 | Z1 | PR.UNSC | SUB.C |
|  | Potable | **Potable Network** |  | 2025-12-03 | 2026-10-01 |  |  |  |  |  |  |  |  |  |  |  |  |  |  |
| DMM2-Proc-Delv-598 |  | Manuf. & Delivery for HDPE Pipes Materials | 86.21d | 2025-12-03 A | 2026-03-26 A | DMM2-Proc-PO-020 | 100% |  |  |  |  | Labor [695.88 h]; Operator [695.88 h]; Mobile Crane [320 h]; Depth: 0.0m - 1.5m; Depth: 1.51m - 2.5m | Proc | Potable | Proc | 0.0245152167981923 | Z1 | PR.UNSC | SUB.C |
| DMM2-Proc-Delv-608 |  | Manuf. & Delivery for Valves Materials | 13.25d | 2026-02-07 A | 2026-02-24 A | DMM2-Proc-PO-021, B3.33 14 13.01.021 SS | 100% |  |  |  |  | Labor [434.92 h]; Operator [434.92 h]; Mobile Crane [200 h]; POT Gate V dia 110 mm; POT Air valve Dia. 50 mm on pipes with Dia. less than 315 mm | Proc | Potable | Proc | 0.00174724094270628 | Z1 | PR.UNSC | SUB.C |
| DMM2-Proc-Delv-618 |  | Manuf. & Delivery for Valves Chambers Materials (75.00% Completed) | 107d | 2026-05-10 A | 2026-09-15 A | DMM2-Proc-PO-022, B3.33 05 63.02.011 SS | 100% |  |  |  |  | Labor [195.71 h]; Operator [195.71 h]; Mobile Crane [90 h]; Air valve chamber; on less than 315 mm Dia. pipeline | Proc | Potable | Proc | 0.00389536028016741 | Z1 | PR.UNSC | SUB.C |
| DMM2-Proc-Delv-618_R |  | Manuf. & Delivery for Valves Chambers Materials(Rem) | 4d | 2026-09-22 A | 2026-10-01 A | DMM2-Proc-PO-022, B3.33 05 63.02.011 SS, DMM2-Proc-Delv-618 | 100% | 2026-09-16 | 2026-09-20 |  |  | Labor [65.24 h]; Operator [65.24 h]; Mobile Crane [30 h]; Air valve chamber; on less than 315 mm Dia. pipeline | Proc | Potable | Proc | 0.00389536028016741 | Z1 | PR.UNSC | SUB.C |

| ID | WBS | Activity | Duration | Start | Finish | Predecessors | Complete | Remaining | Planned start | Planned finish | Total float | Free float | Resources | Weight % | DMM2 Weekly Progress | DMM2 Zones | Networks & Stations | DMM2 Phases | UNASCO | Subcontractors works |
| --- | --- | --- | --- | --- | --- | --- | --- | --- | --- | --- | --- | --- | --- | --- | --- | --- | --- | --- | --- | --- |
|  | Fire Fighting | **Fire Fighting Network** |  | 2025-10-11 | 2026-04-12 |  |  |  |  |  |  |  |  |  |  |  |  |  |  |  |
| DMM2-Proc-Delv-1958 |  | Manuf. & Delivery for Fire Hydrant Materials | 145.46d | 2025-10-11 A | 2026-04-11 A | DMM2-Proc-PO-158, B3.33 14 19.01.fh2 SS | 100% |  |  |  |  |  | Labor [521.91 h]; Operator [521.91 h]; Mobile Crane [240 h]; 3-outlet fire hydrant (2 x 2.5 inch and 1 x 4.5 inch) in the form of a separate dry vacuum cylinder | 0.0226952366253535 | Proc | Z1 | Fire | Proc | PR.UNSC | SUB.C |
| DMM2-Proc-Delv-668 |  | Manuf. & Delivery for HDPE Pipes Materials | 102.29d | 2025-11-11 A | 2026-03-18 A | DMM2-Proc-PO-027, B3.1. 33 14 13.011 SS | 100% |  |  |  |  |  | Labor [260.95 h]; Operator [260.95 h]; Mobile Crane [120 h]; Depth: 0.0m - 1.5m; Depth: 1.51m - 2.5m | 0.0828580956325814 | Proc | Z1 | Fire | Proc | PR.UNSC | SUB.C |
| DMM2-Proc-Delv-678 |  | Manuf. & Delivery for Valves Materials | 1.75d | 2026-02-28 A | 2026-03-02 A | DMM2-Proc-PO-028, B3.1. 33 14 13.021 SS | 100% |  |  |  |  |  | Labor [434.92 h]; Operator [434.92 h]; Mobile Crane [200 h]; FF Gate V dia 250 mm; FF Wash out valve Dia. 100 mm on pipes with Dia. 110-400 mm; FF Air valve Dia. 50 mm on pipes with Dia. less than 315 mm | 0.00408915809000837 | Proc | Z1 | Fire | Proc | PR.UNSC | SUB.C |
| DMM2-Proc-Delv-688 |  | Manuf. & Delivery for Valves Chambers Materials | 29.5d | 2026-02-28 A | 2026-04-12 A | DMM2-Proc-PO-029, B3.33 05 63.02.42 SS | 100% |  |  |  |  |  | Labor [347.94 h]; Operator [347.94 h]; Mobile Crane [160 h]; FF Wash out valve chamber; on 110-400 mm Dia. pipeline; FF Air valve chamber; on less than 315 mm Dia. pipeline | 0.013892091712394 | Proc | Z1 | Fire | Proc | PR.UNSC | SUB.C |
|  | TSE | **TSE Network** |  | 2025-11-27 | 2026-10-22 |  |  |  |  |  |  |  |  |  |  |  |  |  |  |  |
| DMM2-Proc-Delv-638 |  | Manuf. & Delivery for HDPE Pipes Materials | 110.06d | 2025-11-27 A | 2026-04-18 A | DMM2-Proc-PO-024, B4.33 14 13.071 SS | 100% |  |  |  |  |  | Labor [347.94 h]; Operator [347.94 h]; Mobile Crane [160 h]; Dia. 90mm 0.0m - 1.5m; Dia. 110mm 0.0m - 1.5m | 0.0221770079756051 | Proc | Z1 | TSE | Proc | PR.UNSC | SUB.C |
| DMM2-Proc-Delv-658 |  | Manuf. & Delivery for Valves Materials | 1.75d | 2026-02-28 A | 2026-03-02 A | DMM2-Proc-PO-026, B4.33 14 13.061 SS | 100% |  |  |  |  |  | Labor [347.94 h]; Operator [347.94 h]; Mobile Crane [160 h]; TSE Gate V Dia. 100 mm; TSE Wash out valve Dia. 100 mm on pipes with Dia. 110-400 mm; TSE Air valve Dia. 50 mm on pipes with Dia. less than 315 mm | 0.00238560753480712 | Proc | Z1 | TSE | Proc | PR.UNSC | SUB.C |
| DMM2-Proc-Delv-648 |  | Manuf. & Delivery for Solenoid Primary Control Valves Materials | 20d | 2026-09-15 A | 2026-10-22 | DMM2-Proc-PO-025, B4.33 14 13.063 SS, DMM2-Proc-Delv-618_R | 90% | 2d | 2026-10-10 | 2026-11-01 | 46.32d | 0d | Labor [347.94 h]; Operator [347.94 h]; Mobile Crane [160 h]; Solenoid Valve box. 1 Solenoid valve Dia. 1 inch.; Solenoid Valve box. 1 Solenoid valve Dia. 1.5 inch.; Solenoid Valve box. 1 Solenoid valve Dia. 2.0inch. | 0.00134457498547139 | Proc | Z1 | TSE | Proc | PR.UNSC | SUB.C |
|  | SDS1 | **Dry Networks** |  | 2025-12-28 | 2026-10-24 |  |  |  |  |  |  |  |  |  |  |  |  |  |  |  |
|  | MV | **Medium Voltage Network** |  | 2025-12-28 | 2026-01-04 |  |  |  |  |  |  |  |  |  |  |  |  |  |  |  |
| DMM2-Proc-Delv-1218 |  | Manuf. & Delivery for MV Cables Materials | 7d | 2025-12-28 A | 2026-01-04 A | DMM2-Proc-PO-082 | 100% |  |  |  |  |  | Labor [434.92 h]; Operator [434.92 h]; Mobile Crane [200 h]; Cable 13.8 kV 3Cx 500 mm² Al XLPE,/LLDPE / Unarmored | 0.107872339252358 | Proc | Z1 | MV | Proc |  | SUB.C |
|  | LV | **Low Voltage Network** |  | 2025-12-28 | 2026-04-15 |  |  |  |  |  |  |  |  |  |  |  |  |  |  |  |
| DMM2-Proc-Delv-1258 |  | Manuf. & Delivery for LV Cables Materials | 82.5d | 2025-12-28 A | 2026-04-15 A | DMM2-Proc-PO-086, B2.33 71 00 02 97 SS | 100% |  |  |  |  |  | Labor [434.92 h]; Operator [434.92 h]; Mobile Crane [200 h]; Cable, Copper 4x10mm2/ CU/XLPE/SWA/PVC + 1x10mm2 CU/PVC | 0.0216565722191712 | Proc | Z1 | LV | Proc |  | SUB.C |
|  | Telecom | **Telecommunication Network** |  | 2026-02-01 | 2026-03-31 |  |  |  |  |  |  |  |  |  |  |  |  |  |  |  |
| DMM2-Proc-Delv-1278 |  | Manuf. & Delivery for HDPE Ducts Materials | 1.25d | 2026-02-01 A | 2026-02-02 A | DMM2-Proc-PO-088, B2.31 23 00.591 SS | 100% |  |  |  |  |  | Labor [521.91 h]; Operator [521.91 h]; Mobile Crane [240 h]; (6*50mm) HDPE ducts; (6*50mm+2*32mm) HDPE ducts; (6*50mm+4*32mm) HDPE ducts; (2*32mm) HDPE ducts; (4*32mm) HDPE ducts; Road crossing ducts, (6*50mm) HDPE; Road crossing ducts, (2*32mm) HDPE | 0.0905572253393479 | Proc | Z1 | Telecom | Proc |  | SUB.C |
| DMM2-Proc-Delv-1288 |  | Manuf. & Delivery for Manholes Type 1&2 Materials | 15.87d | 2026-03-04 A | 2026-03-31 A | DMM2-Proc-PO-089 | 100% |  |  |  |  |  | Labor [521.91 h]; Operator [521.91 h]; Mobile Crane [240 h]; Manhole Type 1; Manhole Type 2 | 0.0151506838424106 | Proc | Z1 | Telecom | Proc |  | SUB.C |
|  | SL | **Street Lighting** |  | 2025-12-28 | 2026-10-24 |  |  |  |  |  |  |  |  |  |  |  |  |  |  |  |
| DMM2-Proc-Delv-1308 |  | Manuf. & Delivery for SL Cables Materials | 83d | 2025-12-28 A | 2026-04-15 A | DMM2-Proc-PO-091, B2.33 71 00 02 100 | 100% |  |  |  |  |  | Labor [521.91 h]; Operator [521.91 h]; Mobile Crane [240 h]; SL Cable, Copper 4x10mm2/ CU/XLPE/SWA/PVC + 1x10mm2 CU/PVC | 0.0326337276746916 | Proc | Z1 | SL | Proc |  | SUB.C |
| DMM2-Proc-Delv-1318 |  | Manuf. & Delivery for SL Poles Materials | 72.28d | 2025-12-28 A | 2026-04-04 A | DMM2-Proc-PO-092 | 100% |  |  |  |  |  | Labor [434.92 h]; Operator [434.92 h]; Mobile Crane [200 h]; Lighting poles with 1 arm, height of ( 10) meters | 0.103640609462173 | Proc | Z1 | SL | Proc |  | SUB.C |
| DMM2-Proc-Delv-1328 |  | Manuf. & Delivery for SL Luminares Materials (80.00% Completed) | 210d | 2025-12-28 A | 2026-09-15 A | DMM2-Proc-PO-093, B2.33 71 16.021 SS | 100% |  |  |  |  |  | Labor [278.35 h]; Operator [278.35 h]; Mobile Crane [128 h]; Street Lighting( LED), Lamp Lumen: 14560, Luminare Lumen:12700 , complete with control gear and lamp, (80) WATT. | 0.0135413940737668 | Proc | Z1 | SL | Proc |  | SUB.C |
| DMM2-Proc-Delv-1328_R |  | Manuf. & Delivery for SL Luminares Materials(Rem) | 4d | 2026-09-19 A | 2026-10-24 | DMM2-Proc-PO-093, B2.33 71 16.021_R SS, DMM2-Proc-Delv-1328 | 40% | 2.4d | 2026-09-16 | 2026-09-20 | 110.92d |  | Labor [69.59 h]; Operator [69.59 h]; Mobile Crane [32 h]; Street Lighting( LED), Lamp Lumen: 14560, Luminare Lumen:12700 , complete with control gear and lamp, (80) WATT. | 0.0135413940737668 | Proc | Z1 | SL | Proc |  | SUB.C |
|  | Zone 02 | **Zone 02** |  | 2025-12-08 | 2026-10-25 |  |  |  |  |  |  |  |  |  |  |  |  |  |  |  |
|  | SDS | **Wet Networks & Stations** |  | 2025-12-08 | 2026-10-25 |  |  |  |  |  |  |  |  |  |  |  |  |  |  |  |
|  | Sewer | **Sewerage Network** |  | 2025-12-16 | 2026-10-04 |  |  |  |  |  |  |  |  |  |  |  |  |  |  |  |
| DMM2-Proc-Delv-2298 |  | Manuf. & Delivery for HDPE Pipes Materials | 66.5d | 2025-12-16 A | 2026-03-09 A | DMM2-Proc-PO-016 | 100% |  |  |  |  |  | Labor [260.95 h]; Operator [260.95 h]; Mobile Crane [120 h]; Sew HDPE Dia. 160 mm depth: 1.5 - 2.5m | 0.0167916676630577 | Proc | Z2 | Sew | Proc | PR.UNSC | SUB.C |
| DMM2-Proc-Delv-3628 |  | Manuf. & Delivery for GRP Pipes Materials | 57.32d | 2025-12-25 A | 2026-03-08 A | DMM2-Proc-PO-011, DMM2-Proc-Delv-1888 | 100% |  |  |  |  |  | Labor [434.92 h]; Operator [434.92 h]; Mobile Crane [200 h]; Sew Dia. 150mm Depth: 0.0m - 1.5m; Sew Dia. 200mm Depth: 0.0m - 1.5m; Sew Dia. 200mm Depth: 1.51m - 2.5m | 0.0320328202554721 | Proc | Z2 | Sew | Proc | PR.UNSC | SUB.C |
| DMM2-Proc-Delv-2328 |  | Manuf. & Delivery for Discharge Chamber Materials (0.00% Completed) | 210d | 2025-12-28 A | 2026-09-15 A | DMM2-Proc-Delv-3638 SS | 100% |  |  |  |  |  | Labor; Operator; Mobile Crane; Sew. Discharge chamber, size 1500*2000 mm approximately | 0.00162246154794235 | Proc | Z2 | Sew | Proc | PR.UNSC | SUB.C |
| DMM2-Proc-Delv-3638 |  | Manuf. & Delivery for Inlet Manholes Materials | 52d | 2025-12-28 A | 2026-03-02 A | DMM2-Proc-PO-013, DMM2-Proc-Delv-1898 | 100% |  |  |  |  |  | Labor [434.92 h]; Operator [434.92 h]; Mobile Crane [200 h]; MH depth 0 - 1.5m; MH depth 1.51 - 2.5m | 0.0124059831867904 | Proc | Z2 | Sew | Proc | PR.UNSC | SUB.C |
| DMM2-Proc-Delv-2318 |  | Manuf. & Delivery for Valves Materials | 38d | 2026-02-01 A | 2026-03-29 A | DMM2-Proc-PO-018 | 100% |  |  |  |  |  | Labor [434.92 h]; Operator [434.92 h]; Mobile Crane [200 h]; Gate V dia 150 mm on Dia. 160 mm; Air V with dia (50) mm on pipes with dia(160 ) mm. | 0.00218835492546095 | Proc | Z2 | Sew | Proc | PR.UNSC | SUB.C |
| DMM2-Proc-Delv-2328_R |  | Manuf. & Delivery for Discharge Chamber Materials(Rem) | 10d | 2026-09-13 A | 2026-09-30 A | DMM2-Proc-PO-019 FF, DMM2-Proc-Delv-3638 SS, DMM2-Proc-Delv-2328 | 100% |  | 2026-10-07 | 2026-10-18 |  |  | Labor [173.97 h]; Operator [173.97 h]; Mobile Crane [80 h]; Sew. Discharge chamber, size 1500*2000 mm approximately | 0.00162246154794235 | Proc | Z2 | Sew | Proc | PR.UNSC | SUB.C |
| DMM2-Proc-Delv-2308 |  | Manuf. & Delivery for Valves Chambers Materials | 15d | 2026-09-17 A | 2026-10-04 A | DMM2-Proc-PO-017, B3.33 14 19.01.26 SS+1d | 100% |  | 2026-10-13 | 2026-10-31 |  |  | Labor [260.95 h]; Operator [260.95 h]; Mobile Crane [120 h]; Air valve chamber; on 160 mm dia pipeline | 0.00162246195014206 | Proc | Z2 | Sew | Proc | PR.UNSC | SUB.C |

| ID | WBS | Activity | Duration | Start | Finish | Predecessors | Complete | Remaining | Planned start | Planned finish | Total float | Free float | Resources | Weight % | DMM2 Weekly Progress | DMM2 Zones | Networks & Stations | DMM2 Phases | UNASCO | Subcontractors works | JANCO |
| --- | --- | --- | --- | --- | --- | --- | --- | --- | --- | --- | --- | --- | --- | --- | --- | --- | --- | --- | --- | --- | --- |
|  | Storm | **Storm Network** |  | 2025-12-15 | 2026-05-25 |  |  |  |  |  |  |  |  |  |  |  |  |  |  |  |  |
| DMM2-Proc-Delv-2248 |  | Manuf. & Delivery for GRP Pipes Materials | 55.76d | 2025-12-15 A | 2026-02-18 A | DMM2-Proc-PO-011, DMM2-Proc-Delv-508 | 100% |  |  |  |  |  | Labor [347.94 h]; Operator [347.94 h]; Mobile Crane [160 h]; Depth less than 1.5; Depth: 1.51m - 2.5m; less than 1.5; 1.51m - 2.5m; 2.51m - 3.5m; 3.51m - 4.5m | 0.742616438470203 | Proc | Z2 | Storm | Proc | PR.UNSC | SUB.C |  |
| DMM2-Proc-Delv-2268 |  | Manuf. & Delivery for Inlet Manholes Materials | 68.75d | 2025-12-28 A | 2026-03-30 A | DMM2-Proc-PO-013, DMM2-Proc-Delv-528 | 100% |  |  |  |  |  | Labor [434.92 h]; Operator [434.92 h]; Mobile Crane [200 h]; MH depth 1.50 - 2.5m; MH depth 2.51 - 3.5m; Storm MH depth 2.51 - 3.5m; Storm MH depth 3.51 -4.5m; MH depth 4.51 -5.5m | 0.0505674305903221 | Proc | Z2 | Storm | Proc | PR.UNSC | SUB.C |  |
| DMM2-Proc-Delv-2278 |  | Manuf. & Delivery for Concrete Chambers & Catch Basin Materials | 117d | 2025-12-28 A | 2026-05-25 A | DMM2-Proc-PO-014, DMM2-Proc-Delv-538 | 100% |  |  |  |  |  | Labor [434.92 h]; Operator [434.92 h]; Mobile Crane [200 h]; Size 1.5 x 1.5 m, depth 2.51-3.5 m; Size 1.5 x 1.5 m, depth 3.51-4.5 m; Single Catch basin; Double Catch basin | 0.056982740412795 | Proc | Z2 | Storm | Proc | PR.UNSC | SUB.C |  |
|  | Potable | **Potable Network** |  | 2026-02-03 | 2026-10-21 |  |  |  |  |  |  |  |  |  |  |  |  |  |  |  |  |
| DMM2-Proc-Delv-2338 |  | Manuf. & Delivery for HDPE Pipes Materials | 23.49d | 2026-02-03 A | 2026-03-07 A | DMM2-Proc-PO-020, DMM2-Proc-Delv-598, DMM2-Proc-PO-023 | 100% |  |  |  |  |  | Labor [869.84 h]; Operator [869.84 h]; Mobile Crane [400 h]; Depth: 0.0m - 1.5m; Depth: 1.51m - 2.5m | 0.0798782808965281 | Proc | Z2 | Potable | Proc | PR.UNSC | SUB.C |  |
| DMM2-Proc-Delv-2348 |  | Manuf. & Delivery for Valves Materials | 0.82d | 2026-02-21 A | 2026-02-23 A | DMM2-Proc-PO-021, DMM2-Proc-Delv-608 | 100% |  |  |  |  |  | Labor [608.89 h]; Operator [608.89 h]; Mobile Crane [280 h]; POT Gate V dia 110 mm; POT Wash out valve Dia. 100 mm on pipes with Dia. 110-400 mm; POT Air valve Dia. 50 mm on pipes with Dia. less than 315 mm | 0.00249059745514056 | Proc | Z2 | Potable | Proc | PR.UNSC | SUB.C |  |
| DMM2-Proc-Delv-2358 |  | Manuf. & Delivery for Valves Chambers Materials | 6d | 2026-05-21 A | 2026-06-01 A | DMM2-Proc-PO-022 | 100% |  |  |  |  |  | Labor [260.86 h]; Operator [260.95 h]; Mobile Crane [120 h]; Wash out valve chamber; on 110-400 mm Dia. pipeline; Air valve chamber; on less than 315 mm Dia. pipeline | 0.0108027490607919 | Proc | Z2 | Potable | Proc | PR.UNSC | SUB.C |  |
| DMM2-Proc-Delv-2368 |  | Manuf. & Delivery for Flow Meter Materials | 4d | 2026-08-29 A | 2026-10-21 | DMM2-Proc-PO-023, DMM2-Proc-Delv-2348 | 90% | 0.4d | 2026-10-07 | 2026-10-11 | 71.92d | 0d | Labor [608.89 h]; Operator [608.89 h]; Mobile Crane [280 h]; Flow meter | 0.00276184022462967 | Proc | Z2 | Potable | Proc | PR.UNSC | SUB.C |  |
| DMM2-Proc-Delv-3648 |  | Manuf. & Delivery for Flow Meter Chamber Materials | 4d | 2026-09-10 A | 2026-10-21 | DMM2-Proc-Delv-2368 FF | 90% | 0.4d | 2026-10-07 | 2026-10-11 | 71.92d | 6.6d | Labor [434.92 h]; Operator [434.92 h]; Mobile Crane [200 h]; Flow meter chamber | 0.00345362452331904 | Proc | Z2 | Potable | Proc | PR.UNSC | SUB.C |  |
|  | Fire Fighting | **Fire Fighting Network** |  | 2026-02-04 | 2026-09-29 |  |  |  |  |  |  |  |  |  |  |  |  |  |  |  |  |
| DMM2-Proc-Delv-2408 |  | Manuf. & Delivery for HDPE Pipes Materials | 12.36d | 2026-02-04 A | 2026-02-18 A | DMM2-Proc-PO-027, DMM2-Proc-Delv-668 | 100% |  |  |  |  |  | Labor [260.95 h]; Operator [260.95 h]; Mobile Crane [120 h]; Depth: 0.0m - 1.5m; Depth: 1.51m - 2.5m | 0.0843081747800911 | Proc | Z2 | Fire | Proc | PR.UNSC | SUB.C |  |
| DMM2-Proc-Delv-2418 |  | Manuf. & Delivery for Valves Materials | 3.75d | 2026-02-18 A | 2026-02-25 A | DMM2-Proc-PO-028, DMM2-Proc-Delv-678 | 100% |  |  |  |  |  | Labor [434.92 h]; Operator [434.92 h]; Mobile Crane [200 h]; FF Gate V dia 250 mm; FF Wash out valve Dia. 100 mm on pipes with Dia. 110-400 mm; FF Air valve Dia. 50 mm on pipes with Dia. less than 315 mm | 0.00408915809000837 | Proc | Z2 | Fire | Proc | PR.UNSC | SUB.C |  |
| DMM2-Proc-Delv-3698 |  | Manuf. & Delivery for Fire Hydrant Materials | 17.27d | 2026-03-05 A | 2026-04-02 A | DMM2-Proc-PO-158, DMM2-Proc-Delv-1958 | 100% |  |  |  |  |  | Labor [434.92 h]; Operator [434.92 h]; Mobile Crane [200 h]; 3-outlet fire hydrant (2 x 2.5 inch and 1 x 4.5 inch) in the form of a separate dry vacuum cylinder | 0.0226952366253535 | Proc | Z2 | Fire | Proc | PR.UNSC | SUB.C |  |
| DMM2-Proc-Delv-2428 |  | Manuf. & Delivery for Valves Chambers Materials (33.33% Completed) | 86d | 2026-06-08 A | 2026-09-15 A | DMM2-Proc-PO-029, DMM2-Proc-Delv-688 | 100% |  |  |  |  |  | Labor [173.95 h]; Operator [173.95 h]; Mobile Crane [79.99 h]; FF Wash out valve chamber; on 110-400 mm Dia. pipeline; FF Air valve chamber; on less than 315 mm Dia. pipeline | 0.013892091712394 | Proc | Z2 | Fire | Proc | PR.UNSC | SUB.C |  |
| DMM2-Proc-Delv-2428_R |  | Manuf. & Delivery for Valves Chambers Materials(Rem) | 10d | 2026-09-17 A | 2026-09-29 A | DMM2-Proc-PO-029, DMM2-Proc-Delv-688, DMM2-Proc-Delv-2428 | 100% |  | 2026-09-16 | 2026-09-28 |  |  | Labor [347.95 h]; Operator [347.95 h]; Mobile Crane [160.01 h]; FF Wash out valve chamber; on 110-400 mm Dia. pipeline; FF Air valve chamber; on less than 315 mm Dia. pipeline | 0.013892091712394 | Proc | Z2 | Fire | Proc | PR.UNSC | SUB.C |  |
|  | TSE | **TSE Network** |  | 2025-12-08 | 2026-10-24 |  |  |  |  |  |  |  |  |  |  |  |  |  |  |  |  |
| DMM2-Proc-Delv-2378 |  | Manuf. & Delivery for HDPE Pipes Materials | 95.18d | 2025-12-08 A | 2026-04-12 A | DMM2-Proc-PO-024, DMM2-Proc-Delv-638 | 100% |  |  |  |  |  | Labor [521.91 h]; Operator [521.91 h]; Mobile Crane [240 h]; Dia. 125mm 0.0m - 1.5m | 0.0142172984251252 | Proc | Z2 | TSE | Proc | PR.UNSC | SUB.C |  |
| DMM2-Proc-Delv-2398 |  | Manuf. & Delivery for Valves Materials | 38.92d | 2026-02-15 A | 2026-04-13 A | DMM2-Proc-PO-026, DMM2-Proc-Delv-658 | 100% |  |  |  |  |  | Labor [434.92 h]; Operator [434.92 h]; Mobile Crane [200 h]; TSE Gate V Dia. 100 mm; TSE Gate V Dia. 150 mm | 0.00245289371679925 | Proc | Z2 | TSE | Proc | PR.UNSC | SUB.C |  |
| DMM2-Proc-Delv-2388 |  | Manuf. & Delivery for Solenoid Primary Control Valves Materials | 20d | 2026-09-25 A | 2026-10-24 | DMM2-Proc-PO-025, DMM2-Proc-Delv-648 | 85% | 3d | 2026-11-02 | 2026-11-24 | 63.32d | 0d | Labor [347.94 h]; Operator [347.94 h]; Mobile Crane [160 h]; Solenoid Valve box. 1 Solenoid valve Dia. 1 inch.; Solenoid Valve box. 1 Solenoid valve Dia. 1.5 inch.; Solenoid Valve box. 1 Solenoid valve Dia. 2.0inch. | 0.00134457498547139 | Proc | Z2 | TSE | Proc | PR.UNSC | SUB.C |  |
|  | Pot Pump St. | **Potable Water Pump Station** |  | 2026-02-08 | 2026-10-25 |  |  |  |  |  |  |  |  |  |  |  |  |  |  |  |  |
|  | 3 | **Mechanical** |  | 2026-02-08 | 2026-10-24 |  |  |  |  |  |  |  |  |  |  |  |  |  |  |  |  |
| DMM2-Proc-Delv-2508 |  | Manuf. & Delivery for Water Pumps Materials | 142.93d | 2026-02-08 A | 2026-08-10 A | DMM2-Proc-PO-037, B1.1.31 23 19.02 SS, B1.1.31 23 23.102 | 100% |  |  |  |  |  | Labor [1217.78 h]; Operator [1217.78 h]; Mobile Crane [560 h]; Vertical multistage cintrifugal pump | 0.0525022469749364 | Proc | Z2 | Pump | Proc |  | SUB.C | PWPS |
| DMM2-Proc-Delv-2518 |  | Manuf. & Delivery for Fire Pumps Materials (80.00% Completed) | 146d | 2026-03-25 A | 2026-09-15 A | DMM2-Proc-PO-038, B1.1.31 23 23.102 | 100% |  |  |  |  |  | Labor [974.23 h]; Operator [974.23 h]; Mobile Crane [448 h]; Split case cintrifugal pump; Vertical multistage cintrifugal (jockey) pump | 0.286531825980012 | Proc | Z2 | Pump | Proc |  | SUB.C | PWPS |
| DMM2-Proc-Delv-3748 |  | Manuf. & Delivery for Gate Valves Materials | 17d | 2026-04-09 A | 2026-04-28 A | DMM2-Proc-PO-168, DMM2-Proc-PO-021, B1.1.31 23 23.102 | 100% |  |  |  |  |  | Labor [695.88 h]; Operator [695.88 h]; Mobile Crane [320 h]; Gate Valve DN60,; Gate Valve DN80,; Gate Valve DN100,; Gate Valve DN200,; Gate Valve DN350, | 0.00961419627916484 | Proc | Z2 | Pump | Proc |  | SUB.C | PWPS |
| DMM2-Proc-Delv-3728 |  | Manuf. & Delivery for Submersible Pumps Materials | 58.8d | 2026-06-03 A | 2026-08-10 A | DMM2-Proc-PO-056, B1.1.31 23 23.102 | 100% |  |  |  |  |  | Labor [1391.75 h]; Operator [1391.75 h]; Mobile Crane [640 h]; Submersible pump | 0.030998496276238 | Proc | Z2 | Pump | Proc |  | SUB.C | PWPS |
| DMM2-Proc-Delv-2538 |  | Manuf. & Delivery for OverHead Crane Materials (80.00% Completed) | 87d | 2026-06-07 A | 2026-09-15 A | DMM2-Proc-PO-040, B1.1.31 23 23.102, DMM2-Proc-Delv-3738 SS+10d | 100% |  |  |  |  |  | Labor [835.05 h]; Operator [835.05 h]; Mobile Crane [384 h]; OverHead Crane | 0.0381363079187928 | Proc | Z2 | Pump | Proc |  | SUB.C | PWPS |
| DMM2-Proc-Delv-2528 |  | Manuf. & Delivery for Butterfly Valve Materials (80.00% Completed) | 78d | 2026-06-17 A | 2026-09-15 A | DMM2-Proc-PO-039, B1.1.31 23 23.102, DMM2-Proc-Delv-3738 SS+15d | 100% |  |  |  |  |  | Labor [695.88 h]; Operator [695.88 h]; Mobile Crane [320 h]; Butterfly Valve DN200; Butterfly Valve DN300 | 0.00225787858974129 | Proc | Z2 | Pump | Proc |  | SUB.C | PWPS |
| DMM2-Proc-Delv-3768 |  | Manuf. & Delivery for Electromagnetic Flow Meters Materials (80.00% Completed) | 76d | 2026-06-20 A | 2026-09-15 A | DMM2-Proc-PO-178, B1.1.31 23 23.102, DMM2-Proc-Delv-3738 SS+25d | 100% |  |  |  |  |  | Labor [695.88 h]; Operator [695.88 h]; Mobile Crane [320 h]; Electromagnetic Flowmeter DN80, PN16; Electromagnetic Flowmeter DN200, PN16 | 0.00922361388242076 | Proc | Z2 | Pump | Proc |  | SUB.C | PWPS |
| DMM2-Proc-Delv-3758 |  | Manuf. & Delivery for Non Return (Flap) Materials (80.00% Completed) | 73d | 2026-06-23 A | 2026-09-15 A | DMM2-Proc-PO-060, B1.1.31 23 23.102, DMM2-Proc-Delv-3738 SS+20d | 100% |  |  |  |  |  | Labor [626.29 h]; Operator [626.29 h]; Mobile Crane [288 h]; Non return Valve DN60; Non return Valve DN300 | 0.0150172172354208 | Proc | Z2 | Pump | Proc |  | SUB.C | PWPS |
| DMM2-Proc-Delv-3738 |  | Manuf. & Delivery for DI Pipes Materials (80.00% Completed) | 72d | 2026-06-24 A | 2026-09-15 A | DMM2-Proc-PO-057, DMM2-Proc-PO-058, B1.1.31 23 23.102 | 100% |  |  |  |  |  | Labor [556.7 h]; Operator [556.7 h]; Mobile Crane [256 h]; BDI Dia. 80 mm; BDI Dia. 100 mm; BDI Dia. 200 mm; BDI Dia. 300 mm; BDI Dia. 350 mm; DDI Dia. 60 mm; DDI Dia. 80 mm; DDI Dia. 100 mm; DDI Dia. 200 mm; DDI Dia. 300 mm; DDI Dia. 350 mm | 0.00866467646079839 | Proc | Z2 | Pump | Proc |  | SUB.C | PWPS |
| DMM2-Proc-Delv-3768_R |  | Manuf. & Delivery for Electromagnetic Flow Meters Materials(Rem) | 14d | 2026-09-02 A | 2026-10-22 | DMM2-Proc-PO-178, B1.1.31 23 23.102, DMM2-Proc-Delv-3738_R SS, DMM2-Proc-Delv-3768 | 90% | 1.4d | 2026-10-07 | 2026-10-22 | 50.92d | 15d | Labor [173.97 h]; Operator [173.97 h]; Mobile Crane [80 h]; Electromagnetic Flowmeter DN80, PN16; Electromagnetic Flowmeter DN200, PN16 | 0.00922361388242076 | Proc | Z2 | Pump | Proc |  | SUB.C | PWPS |
| DMM2-Proc-Delv-2528_R |  | Manuf. & Delivery for Butterfly Valve Materials(Rem) | 14d | 2026-09-03 A | 2026-10-22 | DMM2-Proc-PO-039, B1.1.31 23 23.102, DMM2-Proc-Delv-3738_R SS, DMM2-Proc-Delv-2528 | 90% | 1.4d | 2026-10-07 | 2026-10-22 | 50.92d | 15d | Labor [173.97 h]; Operator [173.97 h]; Mobile Crane [80 h]; Butterfly Valve DN200; Butterfly Valve DN300 | 0.00225787858974129 | Proc | Z2 | Pump | Proc |  | SUB.C | PWPS |
| DMM2-Proc-Delv-3778 |  | Manuf. & Delivery for Surge Tank Materials | 25d | 2026-09-03 A | 2026-10-24 | DMM2-Proc-PO-063, B1.1.31 23 23.102, DMM2-Proc-Delv-3738_R SS, DMM2-Proc-PO-064 | 90% | 2.5d | 2026-10-07 | 2026-11-04 | 33.82d | 1.9d | Labor [1130.8 h]; Operator [1130.8 h]; Mobile Crane [520 h]; Surge Tank | 0.244071391980182 | Proc | Z2 | Pump | Proc |  | SUB.C | PWPS |
| DMM2-Proc-Delv-3738_R |  | Manuf. & Delivery for DI Pipes Materials(Rem) | 6d | 2026-09-17 A | 2026-10-22 | DMM2-Proc-PO-057, DMM2-Proc-PO-058, B1.1.31 23 23.102, DMM2-Proc-Delv-3738 | 80% | 1.2d | 2026-10-07 | 2026-10-13 | 38.12d | 0d | Labor [139.18 h]; Operator [139.18 h]; Mobile Crane [64 h]; BDI Dia. 80 mm; BDI Dia. 100 mm; BDI Dia. 200 mm; BDI Dia. 300 mm; BDI Dia. 350 mm; DDI Dia. 60 mm; DDI Dia. 80 mm; DDI Dia. 100 mm; DDI Dia. 200 mm; DDI Dia. 300 mm; DDI Dia. 350 mm | 0.00866467646079839 | Proc | Z2 | Pump | Proc |  | SUB.C | PWPS |
| DMM2-Proc-Delv-2518_R |  | Manuf. & Delivery for Fire Pumps Materials(Rem) | 9d | 2026-09-22 A | 2026-09-27 A | DMM2-Proc-PO-038, B1.1.31 23 23.102, DMM2-Proc-Delv-2518 | 100% |  | 2026-09-16 | 2026-09-27 |  |  | Labor [243.56 h]; Operator [243.56 h]; Mobile Crane [112 h]; Split case cintrifugal pump; Vertical multistage cintrifugal (jockey) pump | 0.286531825980012 | Proc | Z2 | Pump | Proc |  | SUB.C | PWPS |
| DMM2-Proc-Delv-3758_R |  | Manuf. & Delivery for Non Return (Flap) Materials(Rem) | 14d | 2026-09-24 A | 2026-10-03 A | DMM2-Proc-PO-060, B1.1.31 23 23.102, DMM2-Proc-Delv-3738_R SS, DMM2-Proc-Delv-3758 | 100% |  | 2026-09-16 | 2026-10-03 |  |  | Labor [156.57 h]; Operator [156.57 h]; Mobile Crane [72 h]; Non return Valve DN60; Non return Valve DN300 | 0.0150172172354208 | Proc | Z2 | Pump | Proc |  | SUB.C | PWPS |
| DMM2-Proc-Delv-2538_R |  | Manuf. & Delivery for OverHead Crane Materials(Rem) | 12d | 2026-10-01 A | 2026-10-24 | DMM2-Proc-PO-040, B1.1.31 23 23.102, DMM2-Proc-Delv-3738_R SS, DMM2-Proc-Delv-2538 | 80% | 2.4d | 2026-10-07 | 2026-10-20 | 25.92d | 0d | Labor [208.76 h]; Operator [208.76 h]; Mobile Crane [96 h]; OverHead Crane | 0.0381363079187928 | Proc | Z2 | Pump | Proc |  | SUB.C | PWPS |

| ID | WBS | Activity | Duration | Start | Finish | Predecessors | Complete | Remaining | Planned start | Planned finish | Total float | Free float | Resources | Weight % | DMM2 Weekly Progress | DMM2 Zones | Networks & Stations | DMM2 Phases | JANCO | Subcontractors works |
| --- | --- | --- | --- | --- | --- | --- | --- | --- | --- | --- | --- | --- | --- | --- | --- | --- | --- | --- | --- | --- |
|  | 2 | **Electrical** |  | 2026-02-18 | 2026-10-25 |  |  |  |  |  |  |  |  |  |  |  |  |  |  |  |
| DMM2-Proc-Delv-3868 |  | Manuf. & Delivery for PLC System Materials (80.00% Completed) | 165d | 2026-02-18 A | 2026-09-15 A | DMM2-Proc-PO-079, DMM2-Proc-Delv-2508 SS+25d | 100% |  |  |  |  |  | Labor [835.05 h]; Operator [835.05 h]; Mobile Crane [384 h]; Testing and commissioning of PLC system, serving the pumping station and all related utilities | 0.0849840590332489 | Proc | Z2 | Pump | Proc | PWPS | SUB.C |
| DMM2-Proc-Delv-3808 |  | Manuf. & Delivery for Motor Control Center (MCC) Materials (80.00% Completed) | 163.25d | 2026-02-21 A | 2026-09-15 A | DMM2-Proc-PO-068, DMM2-Proc-Delv-3768 SS | 100% |  |  |  |  |  | Labor [626.29 h]; Operator [626.29 h]; Mobile Crane [288 h]; MCC - 200AT/200AF, 400V, 3PH, 60HZ, | 0.0610541223983238 | Proc | Z2 | Pump | Proc | PWPS | SUB.C |
| DMM2-Proc-Delv-3848 |  | Manuf. & Delivery for Generators Materials | 2d | 2026-04-14 A | 2026-04-15 A | DMM2-Proc-PO-071, B1.1.31 23 23.102 SS | 100% |  |  |  |  |  | Labor [1217.78 h]; Operator [1217.78 h]; Mobile Crane [560 h]; Standby Diesel Generator Set 550 KVA, 400/230KVA, 3P, 60Hz in Sound Attenuated Enclosure | 0.0381763235072073 | Proc | Z2 | Pump | Proc | PWPS | SUB.C |
| DMM2-Proc-Delv-2648 |  | Manuf. & Delivery for LV Cables Materials (80.00% Completed) | 122d | 2026-04-22 A | 2026-09-15 A | DMM2-Proc-PO-070, DMM2-Proc-Delv-1258 | 100% |  |  |  |  |  | Labor [347.94 h]; Operator [347.94 h]; Mobile Crane [160 h]; 4x1Cx 630mm2 Cu/XLPE//PVC from nearest power supply (SEC) and from generator to the ATS and from ATS to MCC-PW; 4Cx 10mm2 Cu/XLPE/SWA/PVC from MCC-PW to ELP; 4/Cx35mm²+1Cx16mm², CU/MICA/XLPE/LSOH, FIRE RESISTANT CABLE FROM MCC-PW TO Fire pump control panel; 4/Cx6mm² Cu/XLPE/PVC + 1Cx6mm² Cu/PVC from MCC-PW to potable water pumps; 4Cx 25mm2 + 1Cx16mm2 Cu/XLPE/PVC FROM MCC-PW to DB-PW; 3Cx 6mm2 Cu/XLPE/PVC FROM MCC-PW to the two fuel pumps.; 4Cx 25mm2 + 1Cx11mm2 Cu/XLPE/PVC FROM MCC-PW to DB-CH; 3Cx 6mm2 Cu/XLPE/PVC FROM MCC-SPS to the two fuel pumps.; 4Cx 10mm2 + 1Cx10mm2 Cu/XLPE/PVC FROM MCC-PW to EPS; 4Cx 6mm2 Cu/XLPE/SWA/PVC FROM EPS to LIGHTING POLES | 0.0151072380282363 | Proc | Z2 | Pump | Proc | PWPS | SUB.C |
| DMM2-Proc-Delv-3828 |  | Manuf. & Delivery for Local Control Panel Materials (80.00% Completed) | 102d | 2026-05-15 A | 2026-09-15 A | DMM2-Proc-PO-069, DMM2-Proc-Delv-2538 SS+20d | 100% |  | 2026-05-16 | 2026-09-15 |  |  | Labor [626.29 h]; Operator [626.29 h]; Mobile Crane [288 h]; Local Control Panel, IP 65 | 0.00346110909188876 | Proc | Z2 | Pump | Proc | PWPS | SUB.C |
| DMM2-Proc-Delv-2648_R |  | Manuf. & Delivery for LV Cables Materials(Rem) | 5d | 2026-09-12 A | 2026-10-21 | DMM2-Proc-PO-070, DMM2-Proc-Delv-1258, DMM2-Proc-Delv-2648 | 88% | 0.6d | 2026-10-07 | 2026-10-12 | 110.72d | 0d | Labor [86.98 h]; Operator [86.98 h]; Mobile Crane [40 h]; 4x1Cx 630mm2 Cu/XLPE//PVC from nearest power supply (SEC) and from generator to the ATS and from ATS to MCC-PW; 4Cx 10mm2 Cu/XLPE/SWA/PVC from MCC-PW to ELP; 4/Cx35mm²+1Cx16mm², CU/MICA/XLPE/LSOH, FIRE RESISTANT CABLE FROM MCC-PW TO Fire pump control panel; 4/Cx6mm² Cu/XLPE/PVC + 1Cx6mm² Cu/PVC from MCC-PW to potable water pumps; 4Cx 25mm2 + 1Cx16mm2 Cu/XLPE/PVC FROM MCC-PW to DB-PW; 3Cx 6mm2 Cu/XLPE/PVC FROM MCC-PW to the two fuel pumps.; 4Cx 25mm2 + 1Cx11mm2 Cu/XLPE/PVC FROM MCC-PW to DB-CH; 3Cx 6mm2 Cu/XLPE/PVC FROM MCC-SPS to the two fuel pumps.; 4Cx 10mm2 + 1Cx10mm2 Cu/XLPE/PVC FROM MCC-PW to EPS; 4Cx 6mm2 Cu/XLPE/SWA/PVC FROM EPS to LIGHTING POLES | 0.0151072380282363 | Proc | Z2 | Pump | Proc | PWPS | SUB.C |
| DMM2-Proc-Delv-3878 |  | Manuf. & Delivery for Automatic Transfer Switch ATS panel Materials | 19d | 2026-09-13 A | 2026-10-22 | DMM2-Proc-PO-073, B1.1.31 23 23.102 SS+5d | 90% | 1.9d | 2026-10-07 | 2026-10-28 | 46.42d | 5.1d | Labor [1217.78 h]; Operator [1217.78 h]; Mobile Crane [560 h]; supply, install, test & commission Automatic Transfer Switch ATS panel | 0.00880992111873992 | Proc | Z2 | Pump | Proc | PWPS | SUB.C |
| DMM2-Proc-Delv-3858 |  | Manuf. & Delivery for Addressable Fire Alarm System Materials | 25d | 2026-09-15 A | 2026-10-24 | DMM2-Proc-PO-208, DMM2-Proc-Delv-3808_R SS | 90% | 2.5d | 2026-10-07 | 2026-11-04 | 45.82d | 4.7d | Labor [434.92 h]; Operator [434.92 h]; Mobile Crane [200 h]; Addressable fire alarm system | 0.00899098840987546 | Proc | Z2 | Pump | Proc | PWPS | SUB.C |
| DMM2-Proc-Delv-3808_R |  | Manuf. & Delivery for Motor Control Center (MCC) Materials(Rem) | 9d | 2026-09-17 A | 2026-10-22 | DMM2-Proc-PO-068, DMM2-Proc-Delv-3768_R SS, DMM2-Proc-Delv-3808 | 80% | 1.8d | 2026-10-07 | 2026-10-17 | 46.52d | 5.2d | Labor [156.57 h]; Operator [156.57 h]; Mobile Crane [72 h]; MCC - 200AT/200AF, 400V, 3PH, 60HZ, | 0.0610541223983238 | Proc | Z2 | Pump | Proc | PWPS | SUB.C |
| DMM2-Proc-Delv-3828_R |  | Manuf. & Delivery for Local Control Panel Materials(Rem) | 4.2d | 2026-09-20 A | 2026-10-21 | DMM2-Proc-PO-069, DMM2-Proc-Delv-2538_R SS, DMM2-Proc-Delv-3828 | 80% | 0.84d | 2026-10-07 | 2026-10-12 | 35.48d | 3.56d | Labor [156.57 h]; Operator [156.57 h]; Mobile Crane [72 h]; Local Control Panel, IP 65 | 0.00346110909188876 | Proc | Z2 | Pump | Proc | PWPS | SUB.C |
| DMM2-Proc-Delv-3868_R |  | Manuf. & Delivery for PLC System Materials(Rem) | 12d | 2026-09-20 A | 2026-10-25 | DMM2-Proc-PO-079, DMM2-Proc-Delv-2508 SS, DMM2-Proc-Delv-3868 | 67% | 3.96d | 2026-10-07 | 2026-10-20 | 52.36d | 22.44d | Labor [208.76 h]; Operator [208.76 h]; Mobile Crane [96 h]; Testing and commissioning of PLC system, serving the pumping station and all related utilities | 0.0849840590332489 | Proc | Z2 | Pump | Proc | PWPS | SUB.C |
| DMM2-Proc-Delv-3838 |  | Manuf. & Delivery for Panelboards Materials | 16d | 2026-09-25 A | 2026-10-24 | DMM2-Proc-PO-069, B1.1.31 23 23.102 SS+10d, DMM2-Proc-PO-188, DMM2-Proc-PO-0131 | 85% | 2.4d | 2026-10-28 | 2026-11-15 | 41.92d | 4.8d | Labor [1043.81 h]; Operator [1043.81 h]; Mobile Crane [480 h]; DB-PW Panel: 100 Ampere, 3P, IP66,60Hz incomer MCCB; DB-CL Panel: 100 Ampere, 3P, IP66,60Hz incomer MCCB; ELP Panel: phtocell , timer,40 Ampere, 3P, IP66,60Hz incomer MCCB & 5ways outgoing MCCB | 0.00225721513492251 | Proc | Z2 | Pump | Proc | PWPS | SUB.C |
|  | SDS1 | **Dry Networks** |  | 2025-12-28 | 2026-10-24 |  |  |  |  |  |  |  |  |  |  |  |  |  |  |  |
|  | MV | **Medium Voltage Network** |  | 2026-01-06 | 2026-10-22 |  |  |  |  |  |  |  |  |  |  |  |  |  |  |  |
| DMM2-Proc-Delv-2958 |  | Manuf. & Delivery for MV Cables Materials | 1d | 2026-01-06 A | 2026-01-06 A | DMM2-Proc-PO-082, DMM2-Proc-Delv-1218 | 100% |  |  |  |  |  | Labor [434.92 h]; Operator [434.92 h]; Mobile Crane [200 h]; Cable 13.8 kV 3Cx 500 mm² Al XLPE,/LLDPE / Unarmored; Copper Cable 13.8 kV 3Cx 50 mm² CU/XLPE/STA/PVC | 0.108037942881182 | Proc | Z2 | MV | Proc |  | SUB.C |
| DMM2-Proc-Delv-2978 |  | Manuf. & Delivery for Unit Substation Materials (90.00% Completed) | 195d | 2026-01-14 A | 2026-09-15 A | DMM2-Proc-PO-084 | 100% |  |  |  |  |  | Labor [704.57 h]; Operator [704.57 h]; Mobile Crane [324 h]; Unit Substation 13.8/0.4 K V, 500kVA | 0.0114785342669208 | Proc | Z2 | MV | Proc |  | SUB.C |
| DMM2-Proc-Delv-2988 |  | Manuf. & Delivery for RMU Materials (90.00% Completed) | 195d | 2026-01-14 A | 2026-09-15 A | DMM2-Proc-PO-085 | 100% |  |  |  |  |  | Labor [469.72 h]; Operator [469.72 h]; Mobile Crane [216 h]; RMU, 13.8KV | 0.00501093374088928 | Proc | Z2 | MV | Proc |  | SUB.C |
| DMM2-Proc-Delv-2978_R |  | Manuf. & Delivery for Unit Substation Materials(Rem) | 10d | 2026-09-06 A | 2026-10-21 | DMM2-Proc-PO-084, DMM2-Proc-Delv-2978 | 90% | 1d | 2026-10-07 | 2026-10-18 | 112.32d |  | Labor [78.29 h]; Operator [78.29 h]; Mobile Crane [36 h]; Unit Substation 13.8/0.4 K V, 500kVA | 0.0114785342669208 | Proc | Z2 | MV | Proc |  | SUB.C |
| DMM2-Proc-Delv-2988_R |  | Manuf. & Delivery for RMU Materials(Rem) | 10d | 2026-09-17 A | 2026-10-22 | DMM2-Proc-PO-085, DMM2-Proc-Delv-2988 | 80% | 2d | 2026-10-07 | 2026-10-18 | 111.32d |  | Labor [52.19 h]; Operator [52.19 h]; Mobile Crane [24 h]; RMU, 13.8KV | 0.00501093374088928 | Proc | Z2 | MV | Proc |  | SUB.C |
|  | LV | **Low Voltage Network** |  | 2026-03-25 | 2026-09-12 |  |  |  |  |  |  |  |  |  |  |  |  |  |  |  |
| DMM2-Proc-Delv-2998 |  | Manuf. & Delivery for LV Cables Materials | 142.95d | 2026-03-25 A | 2026-09-12 A | DMM2-Proc-PO-086 | 100% |  |  |  |  |  | Labor [782.86 h]; Operator [782.86 h]; Mobile Crane [360 h]; Cable, Copper 4x10mm2/ CU/XLPE/SWA/PVC + 1x10mm2 CU/PVC; Cable, Copper 4x50mm2/ CU/XLPE/PVC +1x25mm2 CU/PVC | 0.0251205731914563 | Proc | Z2 | LV | Proc |  | SUB.C |
|  | Telecom | **Telecommunication Network** |  | 2026-01-21 | 2026-04-12 |  |  |  |  |  |  |  |  |  |  |  |  |  |  |  |
| DMM2-Proc-Delv-3018 |  | Manuf. & Delivery for HDPE Ducts Materials | 9d | 2026-01-21 A | 2026-02-01 A | DMM2-Proc-PO-088, DMM2-Proc-Delv-1278 | 100% |  |  |  |  |  | Labor [260.95 h]; Operator [260.95 h]; Mobile Crane [120 h]; (6*50mm) HDPE ducts; (6*50mm+2*32mm) HDPE ducts; (6*50mm+4*32mm) HDPE ducts; (2*32mm) HDPE ducts; (4*32mm) HDPE ducts; (6*50mm+6*32mm) HDPE ducts; Telecom (6*32mm) HDPE ducts; Road crossing ducts, (6*50mm) HDPE; Road crossing ducts, (2*32mm) HDPE | 0.0929938711201071 | Proc | Z2 | Telecom | Proc |  | SUB.C |
| DMM2-Proc-Delv-3028 |  | Manuf. & Delivery for Manholes Type 1&2 Materials | 24.5d | 2026-03-08 A | 2026-04-12 A | DMM2-Proc-PO-089, DMM2-Proc-Delv-1288 | 100% |  |  |  |  |  | Labor [521.91 h]; Operator [521.91 h]; Mobile Crane [240 h]; Manhole Type 1; Manhole Type 2 | 0.0151506838424106 | Proc | Z2 | Telecom | Proc |  | SUB.C |

| ID | WBS | Activity | Duration | Start | Finish | Predecessors | Complete | Remaining | Planned start | Planned finish | Total float | Resources | Weight % | DMM2 Weekly Progress | DMM2 Zones | Networks & Stations | DMM2 Phases | Subcontractors works | UNASCO |
| --- | --- | --- | --- | --- | --- | --- | --- | --- | --- | --- | --- | --- | --- | --- | --- | --- | --- | --- | --- |
|  | SL | **Street Lighting** |  | 2025-12-28 | 2026-10-24 |  |  |  |  |  |  |  |  |  |  |  |  |  |  |
| DMM2-Proc-Delv-3068 |  | Manuf. & Delivery for SL Luminares Materials (80.11% Completed) | 210d | 2025-12-28 A | 2026-09-15 A | DMM2-Proc-PO-093, DMM2-Proc-Delv-1328 SS | 100% |  |  |  |  | Labor [278.72 h]; Operator [278.72 h]; Mobile Crane [128.17 h]; Street Lighting( LED), Lamp Lumen: 14560, Luminare Lumen:12700 , complete with control gear and lamp, (80) WATT.; Street Lighting( LED), Lamp Lumen: 24286, Luminare Lumen:20914, complete with control gear and lamp, (140) WATT. | 0.0164351757912205 | Proc | Z2 | SL | Proc | SUB.C |  |
| DMM2-Proc-Delv-3058 |  | Manuf. & Delivery for SL Poles Materials | 31.25d | 2026-02-18 A | 2026-04-08 A | DMM2-Proc-PO-092, DMM2-Proc-Delv-1318 | 100% |  |  |  |  | Labor [434.92 h]; Operator [434.92 h]; Mobile Crane [200 h]; Lighting poles with 2 arms, height of ( 10) meters; Lighting poles with 1 arm, height of ( 10) meters; Lighting poles with 1 arm, height of ( 12 ) meters | 0.15033045056075 | Proc | Z2 | SL | Proc | SUB.C |  |
| DMM2-Proc-Delv-3038 |  | Manuf. & Delivery for SL Pillars Materials (80.11% Completed) | 147d | 2026-03-24 A | 2026-09-15 A | DMM2-Proc-PO-090 | 100% |  |  |  |  | Labor [557.44 h]; Operator [557.44 h]; Mobile Crane [256.34 h]; Street Lighting Feeder pillars, work shall include earthing for the lighting pillars. | 0.00402572576640091 | Proc | Z2 | SL | Proc | SUB.C |  |
| DMM2-Proc-Delv-3048 |  | Manuf. & Delivery for SL Cables Materials | 143.97d | 2026-03-25 A | 2026-09-13 A | DMM2-Proc-PO-091, DMM2-Proc-Delv-1308 | 100% |  |  |  |  | Labor [521.91 h]; Operator [521.91 h]; Mobile Crane [240 h]; SL Cable, Copper 4x10mm2/ CU/XLPE/SWA/PVC + 1x10mm2 CU/PVC | 0.0326337276746916 | Proc | Z2 | SL | Proc | SUB.C |  |
| DMM2-Proc-Delv-3038_R |  | Manuf. & Delivery for SL Pillars Materials(Rem) | 20d | 2026-09-12 A | 2026-10-24 | DMM2-Proc-PO-090, DMM2-Proc-Delv-3038 | 88% | 2.4d | 2026-10-07 | 2026-10-29 | 110.92d | Labor [138.43 h]; Operator [138.43 h]; Mobile Crane [63.66 h]; Street Lighting Feeder pillars, work shall include earthing for the lighting pillars. | 0.00402572576640091 | Proc | Z2 | SL | Proc | SUB.C |  |
| DMM2-Proc-Delv-3068_R |  | Manuf. & Delivery for SL Luminares Materials(Rem) | 4d | 2026-09-22 A | 2026-10-24 | DMM2-Proc-PO-093, DMM2-Proc-Delv-1328_R SS, DMM2-Proc-Delv-3068 | 27% | 2.92d | 2026-09-16 | 2026-09-20 | 110.4d | Labor [69.22 h]; Operator [69.22 h]; Mobile Crane [31.83 h]; Street Lighting( LED), Lamp Lumen: 14560, Luminare Lumen:12700 , complete with control gear and lamp, (80) WATT.; Street Lighting( LED), Lamp Lumen: 24286, Luminare Lumen:20914, complete with control gear and lamp, (140) WATT. | 0.0164351757912205 | Proc | Z2 | SL | Proc | SUB.C |  |
|  | Zone 03 | **Zone 03** |  | 2025-11-24 | 2026-10-29 |  |  |  |  |  |  |  |  |  |  |  |  |  |  |
|  | SDS | **Wet Networks & Stations** |  | 2025-11-24 | 2026-10-29 |  |  |  |  |  |  |  |  |  |  |  |  |  |  |
|  | Sewer | **Sewerage Network** |  | 2025-11-24 | 2026-10-04 |  |  |  |  |  |  |  |  |  |  |  |  |  |  |
| DMM2-Proc-Delv-5368 |  | Manuf. & Delivery for GRP Pipes Materials | 81.07d | 2025-11-24 A | 2026-03-02 A | DMM2-Proc-PO-011, DMM2-Proc-Delv-3628 | 100% |  |  |  |  | Labor [434.92 h]; Operator [434.92 h]; Mobile Crane [200 h]; Sew Dia. 150mm Depth: 1.51m - 2.5m; Sew Dia. 150mm Depth: 2.51m - 3.5m; Sew Dia. 200mm Depth: 2.51m - 3.5m; Sew Dia. 200mm Depth: 3.51m - 4.5m; Sew Dia. 200mm Depth: 4.51m -5.5m | 0.0736345864371909 | Proc | Z3 | Sew | Proc | SUB.C | PR.UNSC |
| DMM2-Proc-Delv-4038 |  | Manuf. & Delivery for HDPE Pipes Materials (0.00% Completed) | 223.75d | 2025-12-11 A | 2026-09-15 A | DMM2-Proc-PO-016, DMM2-Proc-Delv-2298 | 100% |  |  |  |  | Labor; Operator; Mobile Crane; Sew HDPE Dia. 160 mm depth: 0- 1.5m | 0.00137723457173344 | Proc | Z3 | Sew | Proc | SUB.C | PR.UNSC |
| DMM2-Proc-Delv-5378 |  | Manuf. & Delivery for Inlet Manholes Materials | 53.22d | 2025-12-28 A | 2026-03-03 A | DMM2-Proc-PO-013, DMM2-Proc-Delv-3638 | 100% |  |  |  |  | Labor [434.92 h]; Operator [434.92 h]; Mobile Crane [200 h]; MH depth 0 - 1.5m; MH depth 1.51 - 2.5m; MH depth 2.51 - 3.5m; MH depth 4.51 -5.5m; MH depth 4.51-5.5 m with back drop; MH depth 6.0-5.51 m; MH depth 6.0- 5.51 m with back drop | 0.112839677776658 | Proc | Z3 | Sew | Proc | SUB.C | PR.UNSC |
| DMM2-Proc-Delv-4038_R |  | Manuf. & Delivery for HDPE Pipes Materials(Rem) | 19d | 2026-09-12 A | 2026-09-26 A | DMM2-Proc-PO-016, DMM2-Proc-Delv-2298, DMM2-Proc-Delv-4038 | 100% |  | 2026-10-07 | 2026-10-28 |  | Labor [330.54 h]; Operator [330.54 h]; Mobile Crane [152 h]; Sew HDPE Dia. 160 mm depth: 0- 1.5m | 0.00137723457173344 | Proc | Z3 | Sew | Proc | SUB.C | PR.UNSC |
| DMM2-Proc-Delv-4048 |  | Manuf. & Delivery for Valves Chambers Materials | 15d | 2026-09-17 A | 2026-09-25 A | DMM2-Proc-PO-017, B6.33 05 39.01.1747 | 100% |  | 2026-09-16 | 2026-10-04 |  | Labor [260.95 h]; Operator [260.95 h]; Mobile Crane [120 h]; Wash out chamber; on 160 mm dia pipeline | 0.00252303515470181 | Proc | Z3 | Sew | Proc | SUB.C | PR.UNSC |
| DMM2-Proc-Delv-4058 |  | Manuf. & Delivery for Valves Materials | 15d | 2026-09-24 A | 2026-10-04 A | DMM2-Proc-PO-018, DMM2-Proc-Delv-2318 | 100% |  | 2026-09-16 | 2026-10-04 |  | Labor [260.95 h]; Operator [260.95 h]; Mobile Crane [120 h]; Gate V dia 150 mm on Dia. 160 mm; Wash out valve with dia (100 ) mm on pipes with dia (160) mm | 0.000662297831644668 | Proc | Z3 | Sew | Proc | SUB.C | PR.UNSC |
|  | Storm | **Storm Network** |  | 2025-12-21 | 2026-08-26 |  |  |  |  |  |  |  |  |  |  |  |  |  |  |
| DMM2-Proc-Delv-3988 |  | Manuf. & Delivery for GRP Pipes Materials | 69.17d | 2025-12-21 A | 2026-03-24 A | DMM2-Proc-PO-011, DMM2-Proc-Delv-2248 | 100% |  |  |  |  | Labor [347.94 h]; Operator [347.94 h]; Mobile Crane [160 h]; Depth: 1.51m - 2.5m; 2.51m - 3.5m | 0.095009888809953 | Proc | Z3 | Storm | Proc | SUB.C | PR.UNSC |
| DMM2-Proc-Delv-4008 |  | Manuf. & Delivery for Inlet Manholes Materials | 77.33d | 2025-12-28 A | 2026-04-09 A | DMM2-Proc-PO-013, DMM2-Proc-Delv-2268 | 100% |  |  |  |  | Labor [347.94 h]; Operator [347.94 h]; Mobile Crane [160 h]; MH depth 1.50 - 2.5m; Storm MH depth 2.51 - 3.5m | 0.0208048460870217 | Proc | Z3 | Storm | Proc | SUB.C | PR.UNSC |
| DMM2-Proc-Delv-4018 |  | Manuf. & Delivery for Concrete Chambers & Catch Basin Materials | 193d | 2025-12-28 A | 2026-08-26 A | DMM2-Proc-PO-014, DMM2-Proc-Delv-2278, DMM2-Proc-PO-069 | 100% |  |  |  |  | Labor [434.92 h]; Operator [434.92 h]; Mobile Crane [200 h]; Size 3.0 x 3.0 m, depth 1.51-2.5 m; Size 3.0 x 1.5 m, depth 1.51-2.5 m; Size 2.5 x 1.5 m, depth 1.51-2.5 m; Size 2.0 x 1.5 m, depth 2.51-3.5 m; Single Catch basin; Double Catch basin | 0.0566024922541917 | Proc | Z3 | Storm | Proc | SUB.C | PR.UNSC |
|  | Potable | **Potable Network** |  | 2025-11-28 | 2026-09-30 |  |  |  |  |  |  |  |  |  |  |  |  |  |  |
| DMM2-Proc-Delv-4078 |  | Manuf. & Delivery for HDPE Pipes Materials | 102.06d | 2025-11-28 A | 2026-04-09 A | DMM2-Proc-PO-020, DMM2-Proc-Delv-2338 | 100% |  | 2025-11-29 | 2026-04-09 |  | Labor [434.92 h]; Operator [434.92 h]; Mobile Crane [200 h]; Depth: 0.0m - 1.5m; Depth: 1.51m - 2.5m | 0.0245152167981923 | Proc | Z3 | Potable | Proc | SUB.C | PR.UNSC |
| DMM2-Proc-Delv-4088 |  | Manuf. & Delivery for Valves Materials | 12d | 2026-03-01 A | 2026-03-18 A | DMM2-Proc-PO-021, DMM2-Proc-Delv-2348 | 100% |  |  |  |  | Labor [434.92 h]; Operator [434.92 h]; Mobile Crane [200 h]; POT Gate V dia 110 mm; POT Wash out valve Dia. 100 mm on pipes with Dia. 110-400 mm; POT Air valve Dia. 50 mm on pipes with Dia. less than 315 mm | 0.00249059745514056 | Proc | Z3 | Potable | Proc | SUB.C | PR.UNSC |
| DMM2-Proc-Delv-4098 |  | Manuf. & Delivery for Valves Chambers Materials (80.00% Completed) | 102d | 2026-05-15 A | 2026-09-15 A | DMM2-Proc-PO-022, DMM2-Proc-Delv-2358 | 100% |  | 2026-05-16 | 2026-09-15 |  | Labor [208.76 h]; Operator [208.76 h]; Mobile Crane [96 h]; Wash out valve chamber; on 110-400 mm Dia. pipeline; Air valve chamber; on less than 315 mm Dia. pipeline | 0.0108027490607919 | Proc | Z3 | Potable | Proc | SUB.C | PR.UNSC |
| DMM2-Proc-Delv-4098_R |  | Manuf. & Delivery for Valves Chambers Materials(Rem) | 3d | 2026-09-07 A | 2026-09-30 A | DMM2-Proc-PO-022, DMM2-Proc-Delv-2358, DMM2-Proc-Delv-4098 | 100% |  | 2026-10-07 | 2026-10-10 |  | Labor [52.19 h]; Operator [52.19 h]; Mobile Crane [24 h]; Wash out valve chamber; on 110-400 mm Dia. pipeline; Air valve chamber; on less than 315 mm Dia. pipeline | 0.0108027490607919 | Proc | Z3 | Potable | Proc | SUB.C | PR.UNSC |

| ID | WBS | Activity | Duration | Start | Finish | Predecessors | Complete | Remaining | Planned start | Planned finish | Total float | Free float | Resources | Weight % | DMM2 Weekly Progress | DMM2 Zones | Networks & Stations | DMM2 Phases | UNASCO | Subcontractors works | JANCO |
| --- | --- | --- | --- | --- | --- | --- | --- | --- | --- | --- | --- | --- | --- | --- | --- | --- | --- | --- | --- | --- | --- |
|  | Fire Fighting | **Fire Fighting Network** |  | 2025-11-28 | 2026-10-03 |  |  |  |  |  |  |  |  |  |  |  |  |  |  |  |  |
| DMM2-Proc-Delv-4148 |  | Manuf. & Delivery for HDPE Pipes Materials | 91.39d | 2025-11-28 A | 2026-03-28 A | DMM2-Proc-PO-027, DMM2-Proc-Delv-2408 | 100% |  | 2025-11-29 | 2026-03-28 |  |  | Labor [260.95 h]; Operator [260.95 h]; Mobile Crane [120 h]; Depth: 0.0m - 1.5m; Depth: 1.51m - 2.5m | 0.0828580956325814 | Proc | Z3 | Fire | Proc | PR.UNSC | SUB.C |  |
| DMM2-Proc-Delv-4158 |  | Manuf. & Delivery for Valves Materials | 6.22d | 2026-04-06 A | 2026-04-13 A | DMM2-Proc-PO-028, DMM2-Proc-Delv-2418 | 100% |  |  |  |  |  | Labor [434.92 h]; Operator [434.92 h]; Mobile Crane [200 h]; FF Gate V dia 250 mm; FF Wash out valve Dia. 100 mm on pipes with Dia. 110-400 mm; FF Air valve Dia. 50 mm on pipes with Dia. less than 315 mm | 0.00408915809000837 | Proc | Z3 | Fire | Proc | PR.UNSC | SUB.C |  |
| DMM2-Proc-Delv-5438 |  | Manuf. & Delivery for Fire Hydrant Materials | 24.37d | 2026-04-22 A | 2026-05-20 A | DMM2-Proc-PO-158, DMM2-Proc-Delv-3698 | 100% |  |  |  |  |  | Labor [521.91 h]; Operator [521.91 h]; Mobile Crane [240 h]; 3-outlet fire hydrant (2 x 2.5 inch and 1 x 4.5 inch) in the form of a separate dry vacuum cylinder | 0.0226952366253535 | Proc | Z3 | Fire | Proc | PR.UNSC | SUB.C |  |
| DMM2-Proc-Delv-4168 |  | Manuf. & Delivery for Valves Chambers Materials (80.00% Completed) | 104d | 2026-05-13 A | 2026-09-15 A | DMM2-Proc-PO-029, DMM2-Proc-Delv-2428 SS | 100% |  |  |  |  |  | Labor [347.94 h]; Operator [347.94 h]; Mobile Crane [160 h]; FF Wash out valve chamber; on 110-400 mm Dia. pipeline; FF Air valve chamber; on less than 315 mm Dia. pipeline | 0.013892091712394 | Proc | Z3 | Fire | Proc | PR.UNSC | SUB.C |  |
| DMM2-Proc-Delv-4168_R |  | Manuf. & Delivery for Valves Chambers Materials(Rem) | 2d | 2026-09-12 A | 2026-10-03 A | DMM2-Proc-PO-029, DMM2-Proc-Delv-2428_R SS, DMM2-Proc-Delv-4168 | 100% |  | 2026-10-07 | 2026-10-08 |  |  | Labor [86.98 h]; Operator [86.98 h]; Mobile Crane [40 h]; FF Wash out valve chamber; on 110-400 mm Dia. pipeline; FF Air valve chamber; on less than 315 mm Dia. pipeline | 0.013892091712394 | Proc | Z3 | Fire | Proc | PR.UNSC | SUB.C |  |
|  | TSE | **TSE Network** |  | 2025-12-07 | 2026-10-24 |  |  |  |  |  |  |  |  |  |  |  |  |  |  |  |  |
| DMM2-Proc-Delv-4118 |  | Manuf. & Delivery for HDPE Pipes Materials | 83.03d | 2025-12-07 A | 2026-03-26 A | DMM2-Proc-PO-024, DMM2-Proc-Delv-2378 | 100% |  |  |  |  |  | Labor [521.91 h]; Operator [521.91 h]; Mobile Crane [240 h]; Dia. 25mm 0.0m - 1.5m; Dia. 32mm 0.0m - 1.5m; Dia. 50mm 0.0m - 1.5m; Dia. 63mm 0.0m - 1.5m; Dia. 75mm 0.0m - 1.5m; Dia. 110mm 0.0m - 1.5m; Dia. 125mm 0.0m - 1.5m | 0.105702664895171 | Proc | Z3 | TSE | Proc | PR.UNSC | SUB.C |  |
| DMM2-Proc-Delv-4138 |  | Manuf. & Delivery for Valves Materials | 26.22d | 2026-03-06 A | 2026-04-13 A | DMM2-Proc-PO-026, DMM2-Proc-Delv-2398 | 100% |  | 2026-03-07 | 2026-04-13 |  |  | Labor [434.92 h]; Operator [434.92 h]; Mobile Crane [200 h]; TSE Gate V Dia. 100 mm; TSE Air valve Dia. 50 mm on pipes with Dia. less than 315 mm | 0.0020139367975072 | Proc | Z3 | TSE | Proc | PR.UNSC | SUB.C |  |
| DMM2-Proc-Delv-4128 |  | Manuf. & Delivery for Solenoid Primary Control Valves Materials | 10d | 2026-09-25 A | 2026-10-24 | DMM2-Proc-PO-025 FF, DMM2-Proc-Delv-2388 FF | 85% | 1.5d | 2026-11-14 | 2026-11-24 | 63.32d | 5.25d | Labor [347.94 h]; Operator [347.94 h]; Mobile Crane [160 h]; Solenoid Valve box. 1 Solenoid valve Dia. 1 inch.; Solenoid Valve box. 1 Solenoid valve Dia. 1.5 inch.; Solenoid Valve box. 1 Solenoid valve Dia. 2.0inch. | 0.00134457498547139 | Proc | Z3 | TSE | Proc | PR.UNSC | SUB.C |  |
|  | Sewer Lift St. | **Sewer Lift Station** |  | 2025-12-24 | 2026-10-29 |  |  |  |  |  |  |  |  |  |  |  |  |  |  |  |  |
|  | 3 | **Mechanical** |  | 2025-12-24 | 2026-10-29 |  |  |  |  |  |  |  |  |  |  |  |  |  |  |  |  |
| DMM2-Proc-Delv-4518 |  | Manuf. & Delivery for JIB Crane Materials (46.78% Completed) | 213d | 2025-12-24 A | 2026-09-15 A | DMM2-Proc-PO-064 | 100% |  |  |  |  |  | Labor [651.09 h]; Operator [651.09 h]; Mobile Crane [299.41 h]; JIB Crane | 0.00990533413896718 | Proc | Z3 | Lift | Proc |  | SUB.C | SLS |
| DMM2-Proc-Delv-4448 |  | Manuf. & Delivery for Double Flanged DI Pipes Materials (0.00% Completed) | 211d | 2025-12-26 A | 2026-09-15 A | DMM2-Proc-PO-057, DMM2-Proc-Delv-7439 SS | 100% |  | 2025-12-27 | 2026-09-15 |  |  | Labor; Operator; Mobile Crane; Double flanged ductile iron pipe with Dia. 150 mm | 0.000832959046549748 | Proc | Z3 | Lift | Proc |  | SUB.C | SLS |
| DMM2-Proc-Delv-4478 |  | Manuf. & Delivery for Non Return Valve (Flap) Materials (0.00% Completed) | 187d | 2026-01-24 A | 2026-09-15 A | DMM2-Proc-PO-060 | 100% |  |  |  |  |  | Labor; Operator; Mobile Crane; Non return Valve DN150 | 0.000895029089841887 | Proc | Z3 | Lift | Proc |  | SUB.C | SLS |
| DMM2-Proc-Delv-4508 |  | Manuf. & Delivery for Surge Tank Materials | 30d | 2026-09-01 A | 2026-10-24 | DMM2-Proc-PO-063, DMM2-Proc-PO-071 | 90% | 3d | 2026-10-07 | 2026-11-10 | 39.32d | 3d | Labor [1217.78 h]; Operator [1217.78 h]; Mobile Crane [560 h]; Surge Tank | 0.031697069244695 | Proc | Z3 | Lift | Proc |  | SUB.C | SLS |
| DMM2-Proc-Delv-4448_R |  | Manuf. & Delivery for Double Flanged DI Pipes Materials(Rem) | 20d | 2026-09-12 A | 2026-10-24 | DMM2-Proc-PO-057, DMM2-Proc-Delv-7439_R SS, DMM2-Proc-Delv-4448 | 88% | 2.4d | 2026-10-07 | 2026-10-29 | 33.92d | 1.6d | Labor [608.89 h]; Operator [608.89 h]; Mobile Crane [280 h]; Double flanged ductile iron pipe with Dia. 150 mm | 0.000832959046549748 | Proc | Z3 | Lift | Proc |  | SUB.C | SLS |
| DMM2-Proc-Delv-4488 |  | Manuf. & Delivery for Basket Screens Materials | 20d | 2026-09-12 A | 2026-10-25 | DMM2-Proc-PO-061 | 80% | 4d | 2026-10-07 | 2026-10-29 | 35.32d | 14d | Labor [695.88 h]; Operator [695.88 h]; Mobile Crane [320 h]; Basket screens | 0.0195309886573868 | Proc | Z3 | Lift | Proc |  | SUB.C | SLS |
| DMM2-Proc-Delv-4438 |  | Manuf. & Delivery for Submersible Pumps Materials | 13d | 2026-09-13 A | 2026-10-22 | DMM2-Proc-PO-056, DMM2-Proc-PO-054, DMM2-Proc-PO-044 | 90% | 1.3d | 2026-10-17 | 2026-10-31 | 35.02d | 13.7d | Labor [1217.78 h]; Operator [1217.78 h]; Mobile Crane [560 h]; Submersibel, wet installed pump | 0.0333292102819702 | Proc | Z3 | Lift | Proc |  | SUB.C | SLS |
| DMM2-Proc-Delv-4478_R |  | Manuf. & Delivery for Non Return Valve (Flap) Materials(Rem) | 20d | 2026-09-13 A | 2026-10-27 | DMM2-Proc-PO-060, DMM2-Proc-Delv-4478 | 70% | 6d | 2026-10-07 | 2026-10-29 | 34.32d | 11d | Labor [869.84 h]; Operator [869.84 h]; Mobile Crane [400 h]; Non return Valve DN150 | 0.000895029089841887 | Proc | Z3 | Lift | Proc |  | SUB.C | SLS |
| DMM2-Proc-Delv-4518_R |  | Manuf. & Delivery for JIB Crane Materials(Rem) | 15d | 2026-09-19 A | 2026-10-29 | DMM2-Proc-PO-064, DMM2-Proc-Delv-4518 | 50% | 7.5d | 2026-10-07 | 2026-10-24 | 25.82d | 4.5d | Labor [740.66 h]; Operator [740.66 h]; Mobile Crane [340.59 h]; JIB Crane | 0.00990533413896718 | Proc | Z3 | Lift | Proc |  | SUB.C | SLS |
| DMM2-Proc-Delv-4458 |  | Manuf. & Delivery for Buried Flanged DI Pipes Materials | 2d | 2026-09-25 A | 2026-10-21 | DMM2-Proc-PO-058, DMM2-Proc-Delv-4448_R, DMM2-Proc-PO-071 | 85% | 0.3d | 2026-10-31 | 2026-11-01 | 33.02d | 0.7d | Labor [521.91 h]; Operator [521.91 h]; Mobile Crane [240 h]; Buried ductile iron pipes with Dia. 150 mm | 0.00138826507758292 | Proc | Z3 | Lift | Proc |  | SUB.C | SLS |
| DMM2-Proc-Delv-4498 |  | Manuf. & Delivery for Odor Control Unit Materials | 3d | 2026-09-25 A | 2026-10-21 | DMM2-Proc-PO-062, DMM2-Proc-Delv-4558 SS, DMM2-Proc-Delv-4488 | 85% | 0.45d | 2026-10-31 | 2026-11-02 | 41.87d | 20.55d | Labor [869.84 h]; Operator [869.84 h]; Mobile Crane [400 h]; Odor Control Unit | 0.021558668420105 | Proc | Z3 | Lift | Proc |  | SUB.C | SLS |
|  | 2 | **Electrical** |  | 2026-01-05 | 2026-10-24 |  |  |  |  |  |  |  |  |  |  |  |  |  |  |  |  |
| DMM2-Proc-Delv-4608 |  | Manuf. & Delivery for Automatic Transfer (Switch ATS) Materials (0.00% Completed) | 203d | 2026-01-05 A | 2026-09-15 A | DMM2-Proc-PO-073, DMM2-Proc-PO-065 FF | 100% |  |  |  |  |  | Labor; Operator; Mobile Crane; Automatic Transfer Switch ATS panel | 0.00421850680867205 | Proc | Z3 | Lift | Proc |  | SUB.C | SLS |
| DMM2-Proc-Delv-4628 |  | Manuf. & Delivery for Displacement Rotary Type Pump Materials (42.56% Completed) | 195d | 2026-01-14 A | 2026-09-15 A | DMM2-Proc-PO-075 | 100% |  |  |  |  |  | Labor [592.28 h]; Operator [592.28 h]; Mobile Crane [272.36 h]; Positive displacement rotary type pump | 0.0012935466753892 | Proc | Z3 | Lift | Proc |  | SUB.C | SLS |
| DMM2-Proc-Delv-4668 |  | Manuf. & Delivery for PLC System Materials (80.00% Completed) | 159.5d | 2026-02-28 A | 2026-09-15 A | DMM2-Proc-PO-079, DMM2-Proc-Delv-4628 SS, DMM2-Proc-Delv-4578 SS, DMM2-Proc-Delv-4518 SS | 100% |  |  |  |  |  | Labor [835.05 h]; Operator [835.05 h]; Mobile Crane [384 h]; Supply, installation, testing and commissioning of PLC system | 0.241089123849166 | Proc | Z3 | Lift | Proc |  | SUB.C | SLS |
| DMM2-Proc-Delv-4578 |  | Manuf. & Delivery for Low Voltage Cables Materials (50.00% Completed) | 137d | 2026-04-05 A | 2026-09-15 A | DMM2-Proc-PO-070, DMM2-Proc-Delv-4478 SS | 100% |  |  |  |  |  | Labor [260.95 h]; Operator [260.95 h]; Mobile Crane [120 h]; 4Cx 95mm2 Cu/XLPE//PVC from nearest power supply (SEC) and generator to the ATS and from ATS to MCC-SPS; 4Cx 10mm2 Cu/XLPE/SWA/PVC from MCC-SPS to ELP; 4Cx 35mm2 + 1Cx16mm2 SUBMERGED RUBBER INSULATED FLEXIBLE CABLE from MCC to PUMP1& PUMP2.; 4Cx 10mm2 + 1Cx10mm2 Cu/XLPE/PVC FROM MCC-SPS to DB-SPS; 4Cx 10mm2 + 1Cx10mm2 Cu/XLPE/PVC FROM MCC-SPS to Penstok; 4Cx 10mm2 + 1Cx10mm2 Cu/XLPE/PVC FROM MCC-SPS to Odor Control Unit; 4Cx 6mm2 + 1Cx6mm2 Cu/XLPE/PVC FROM MCC-SPS to the mechanical bar screen; 3Cx 6mm2 Cu/XLPE/PVC FROM MCC-SPS to the two fuel pumps.; 4Cx 6mm2 + 1Cx6mm2 Cu/XLPE/PVC FROM MCC-SPS to the mechanical crane | 0.00279995364046789 | Proc | Z3 | Lift | Proc |  | SUB.C | SLS |
| DMM2-Proc-Delv-4588 |  | Manuf. & Delivery for Standby Diesel Generator Materials | 2d | 2026-04-14 A | 2026-04-15 A | DMM2-Proc-PO-071, DMM2-Proc-PO-058, DMM2-Proc-PO-0138 | 100% |  |  |  |  |  | Labor [1391.75 h]; Operator [1391.75 h]; Mobile Crane [640 h]; Standby Diesel Generator Set 100 KVA, 400/230KVA, 3P, 60Hz in Sound Attenuated Enclosure | 0.0208128554283119 | Proc | Z3 | Lift | Proc |  | SUB.C | SLS |
| DMM2-Proc-Delv-4598 |  | Manuf. & Delivery for Fuel Pump Materials (50.00% Completed) | 111d | 2026-05-05 A | 2026-09-15 A | DMM2-Proc-PO-072, DMM2-Proc-Delv-4608 SS | 100% |  |  |  |  |  | Labor [521.91 h]; Operator [521.91 h]; Mobile Crane [240 h]; Manually operated fuel pump | 0.000487144283886042 | Proc | Z3 | Lift | Proc |  | SUB.C | SLS |
| DMM2-Proc-Delv-4578_R |  | Manuf. & Delivery for Low Voltage Cables Materials(Rem) | 15d | 2026-08-29 A | 2026-10-22 | DMM2-Proc-PO-070, DMM2-Proc-Delv-4478_R SS, DMM2-Proc-Delv-4578 | 90% | 1.5d | 2026-10-07 | 2026-10-24 | 46.82d | 28.5d | Labor [260.95 h]; Operator [260.95 h]; Mobile Crane [120 h]; 4Cx 95mm2 Cu/XLPE//PVC from nearest power supply (SEC) and generator to the ATS and from ATS to MCC-SPS; 4Cx 10mm2 Cu/XLPE/SWA/PVC from MCC-SPS to ELP; 4Cx 35mm2 + 1Cx16mm2 SUBMERGED RUBBER INSULATED FLEXIBLE CABLE from MCC to PUMP1& PUMP2.; 4Cx 10mm2 + 1Cx10mm2 Cu/XLPE/PVC FROM MCC-SPS to DB-SPS; 4Cx 10mm2 + 1Cx10mm2 Cu/XLPE/PVC FROM MCC-SPS to Penstok; 4Cx 10mm2 + 1Cx10mm2 Cu/XLPE/PVC FROM MCC-SPS to Odor Control Unit; 4Cx 6mm2 + 1Cx6mm2 Cu/XLPE/PVC FROM MCC-SPS to the mechanical bar screen; 3Cx 6mm2 Cu/XLPE/PVC FROM MCC-SPS to the two fuel pumps.; 4Cx 6mm2 + 1Cx6mm2 Cu/XLPE/PVC FROM MCC-SPS to the mechanical crane | 0.00279995364046789 | Proc | Z3 | Lift | Proc |  | SUB.C | SLS |
| DMM2-Proc-Delv-4558 |  | Manuf. & Delivery for Motor Control Center (MCC) Materials | 3d | 2026-09-02 A | 2026-10-21 | DMM2-Proc-PO-068 SS, DMM2-Proc-Delv-7458 SS, DMM2-Proc-PO-065 SS | 90% | 0.3d | 2026-10-10 | 2026-10-12 | 36.02d | 17.7d | Labor [1043.81 h]; Operator [1043.81 h]; Mobile Crane [480 h]; MCC - 160AT/250AF, 400V, 3PH, 60HZ, | 0.00733577372887643 | Proc | Z3 | Lift | Proc |  | SUB.C | SLS |
| DMM2-Proc-Delv-4608_R |  | Manuf. & Delivery for Automatic Transfer (Switch ATS) Materials(Rem) | 20d | 2026-09-12 A | 2026-10-22 | DMM2-Proc-PO-073, DMM2-Proc-PO-065 FF, DMM2-Proc-Delv-4608 | 90% | 2d | 2026-10-07 | 2026-10-29 | 36.32d | 18d | Labor [869.84 h]; Operator [869.84 h]; Mobile Crane [400 h]; Automatic Transfer Switch ATS panel | 0.00421850680867205 | Proc | Z3 | Lift | Proc |  | SUB.C | SLS |
| DMM2-Proc-Delv-4598_R |  | Manuf. & Delivery for Fuel Pump Materials(Rem) | 20d | 2026-09-15 A | 2026-10-22 | DMM2-Proc-PO-072, DMM2-Proc-Delv-4608_R SS, DMM2-Proc-Delv-4598 | 90% | 2d | 2026-10-07 | 2026-10-29 | 45.32d | 9d | Labor [521.91 h]; Operator [521.91 h]; Mobile Crane [240 h]; Manually operated fuel pump | 0.000487144283886042 | Proc | Z3 | Lift | Proc |  | SUB.C | SLS |
| DMM2-Proc-Delv-4628_R |  | Manuf. & Delivery for Displacement Rotary Type Pump Materials(Rem) | 24d | 2026-09-19 A | 2026-10-24 | DMM2-Proc-PO-075, DMM2-Proc-Delv-4628 | 90% | 2.4d | 2026-10-07 | 2026-11-03 | 30.92d | 9.6d | Labor [799.47 h]; Operator [799.47 h]; Mobile Crane [367.64 h]; Positive displacement rotary type pump | 0.0012935466753892 | Proc | Z3 | Lift | Proc |  | SUB.C | SLS |
| DMM2-Proc-Delv-4668_R |  | Manuf. & Delivery for PLC System Materials(Rem) | 15d | 2026-09-19 A | 2026-10-22 | DMM2-Proc-PO-079, DMM2-Proc-Delv-4628_R SS, DMM2-Proc-Delv-4578_R SS, DMM2-Proc-Delv-4518_R SS, DMM2-Proc-Delv-4668 | 90% | 1.5d | 2026-10-07 | 2026-10-24 | 55.82d | 37.5d | Labor [208.76 h]; Operator [208.76 h]; Mobile Crane [96 h]; Supply, installation, testing and commissioning of PLC system | 0.241089123849166 | Proc | Z3 | Lift | Proc |  | SUB.C | SLS |
| DMM2-Proc-Delv-4568 |  | Manuf. & Delivery for Local Control Panel Materials | 3d | 2026-09-25 A | 2026-10-21 | DMM2-Proc-PO-069, DMM2-Proc-Delv-7454 | 85% | 0.45d | 2026-10-31 | 2026-11-02 | 41.87d | 23.55d | Labor [521.91 h]; Operator [521.91 h]; Mobile Crane [240 h]; Local Control Panel, IP 65 | 0.00230740606125918 | Proc | Z3 | Lift | Proc |  | SUB.C | SLS |

| ID | WBS | Activity | Duration | Start | Finish | Predecessors | Complete | Remaining | Planned start | Planned finish | Total float | Free float | Resources | Weight % | DMM2 Weekly Progress | DMM2 Zones | Networks & Stations | DMM2 Phases | Subcontractors works |
| --- | --- | --- | --- | --- | --- | --- | --- | --- | --- | --- | --- | --- | --- | --- | --- | --- | --- | --- | --- |
|  | SDS1 | **Dry Networks** |  | 2026-01-06 | 2026-10-27 |  |  |  |  |  |  |  |  |  |  |  |  |  |  |
|  | MV | **Medium Voltage Network** |  | 2026-01-06 | 2026-10-22 |  |  |  |  |  |  |  |  |  |  |  |  |  |  |
| DMM2-Proc-Delv-4698 |  | Manuf. & Delivery for MV Cables Materials | 9.91d | 2026-01-06 A | 2026-01-17 A | DMM2-Proc-PO-082, DMM2-Proc-Delv-2958 | 100% |  |  |  |  |  | Labor [434.92 h]; Operator [434.92 h]; Mobile Crane [200 h]; Cable 13.8 kV 3Cx 500 mm² Al XLPE,/LLDPE / Unarmored; Copper Cable 13.8 kV 3Cx 50 mm² CU/XLPE/STA/PVC | 0.108037942881182 | Proc | Z3 | MV | Proc | SUB.C |
| DMM2-Proc-Delv-4728 |  | Manuf. & Delivery for RMU Materials (80.11% Completed) | 126d | 2026-04-17 A | 2026-09-15 A | DMM2-Proc-PO-085, DMM2-Proc-Delv-2988 SS | 100% |  | 2026-04-18 | 2026-09-15 |  |  | Labor [418.08 h]; Operator [418.08 h]; Mobile Crane [192.26 h]; RMU, 13.8KV | 0.00501093374088928 | Proc | Z3 | MV | Proc | SUB.C |
| DMM2-Proc-Delv-4718 |  | Manuf. & Delivery for Unit Substation Materials (80.11% Completed) | 125d | 2026-04-19 A | 2026-09-15 A | DMM2-Proc-PO-084, DMM2-Proc-Delv-6438, DMM2-Proc-Delv-2978 SS | 100% |  |  |  |  |  | Labor [696.8 h]; Operator [696.8 h]; Mobile Crane [320.43 h]; Unit Substation 13.8/0.4 K V, 500kVA | 0.0114785342669208 | Proc | Z3 | MV | Proc | SUB.C |
| DMM2-Proc-Delv-4728_R |  | Manuf. & Delivery for RMU Materials(Rem) | 20d | 2026-09-13 A | 2026-10-22 | DMM2-Proc-PO-085, DMM2-Proc-Delv-2988_R SS, DMM2-Proc-Delv-4728 | 90% | 2d | 2026-10-07 | 2026-10-29 | 111.32d |  | Labor [103.82 h]; Operator [103.82 h]; Mobile Crane [47.74 h]; RMU, 13.8KV | 0.00501093374088928 | Proc | Z3 | MV | Proc | SUB.C |
| DMM2-Proc-Delv-4718_R |  | Manuf. & Delivery for Unit Substation Materials(Rem) | 20d | 2026-09-14 A | 2026-10-22 | DMM2-Proc-PO-084, DMM2-Proc-Delv-6438, DMM2-Proc-Delv-2978_R SS, DMM2-Proc-Delv-4718 | 90% | 2d | 2026-10-07 | 2026-10-29 | 111.32d |  | Labor [173.04 h]; Operator [173.04 h]; Mobile Crane [79.57 h]; Unit Substation 13.8/0.4 K V, 500kVA | 0.0114785342669208 | Proc | Z3 | MV | Proc | SUB.C |
|  | LV | **Low Voltage Network** |  | 2026-03-11 | 2026-10-27 |  |  |  |  |  |  |  |  |  |  |  |  |  |  |
| DMM2-Proc-Delv-4738 |  | Manuf. & Delivery for LV Cables Materials | 147.44d | 2026-03-11 A | 2026-09-10 A | DMM2-Proc-PO-086, DMM2-Proc-Delv-2998 | 100% |  |  |  |  |  | Labor [104.38 h]; Operator [104.38 h]; Mobile Crane [48 h]; Cable, Copper 4x10mm2/ CU/XLPE/SWA/PVC + 1x10mm2 CU/PVC; Cable, Copper 4x50mm2/ CU/XLPE/PVC +1x25mm2 CU/PVC | 0.0251205731914563 | Proc | Z3 | LV | Proc | SUB.C |
| DMM2-Proc-Delv-7199 |  | Manuf. & Delivery for LV Panels Materials (80.11% Completed) | 133d | 2026-04-09 A | 2026-09-15 A | DMM2-Proc-PO-209, DMM2-Proc-Delv-2998 | 100% |  |  |  |  |  | Labor [627.12 h]; Operator [627.12 h]; Mobile Crane [288.38 h]; 0.6/1 KV Low Voltage Distribution Panels for Industrial UPS - Cameras | 0.00248221041610477 | Proc | Z3 | LV | Proc | SUB.C |
| DMM2-Proc-Delv-4748 |  | Manuf. & Delivery for LV Pillars Materials (80.11% Completed) | 129d | 2026-04-14 A | 2026-09-15 A | DMM2-Proc-PO-087 | 100% |  |  |  |  |  | Labor [627.12 h]; Operator [627.12 h]; Mobile Crane [288.38 h]; 0.6/1 KV Low Voltage Distribution Pillars with 5 Outgoing feeders rated 200 Ampers Fuse type | 0.00393307988467306 | Proc | Z3 | LV | Proc | SUB.C |
| DMM2-Proc-Delv-4748_R |  | Manuf. & Delivery for LV Pillars Materials(Rem) | 20d | 2026-09-16 A | 2026-10-22 | DMM2-Proc-PO-087, DMM2-Proc-Delv-4748 | 90% | 2d | 2026-10-07 | 2026-10-29 | 88.32d | 26d | Labor [155.74 h]; Operator [155.74 h]; Mobile Crane [71.62 h]; 0.6/1 KV Low Voltage Distribution Pillars with 5 Outgoing feeders rated 200 Ampers Fuse type | 0.00393307988467306 | Proc | Z3 | LV | Proc | SUB.C |
| DMM2-Proc-Delv-7199_R |  | Manuf. & Delivery for LV Panels Materials(Rem) | 20d | 2026-09-17 A | 2026-10-27 | DMM2-Proc-PO-209, DMM2-Proc-Delv-2998, DMM2-Proc-Delv-7199 | 70% | 6d | 2026-10-07 | 2026-10-29 | 84.32d | 22d | Labor [155.74 h]; Operator [155.74 h]; Mobile Crane [71.62 h]; 0.6/1 KV Low Voltage Distribution Panels for Industrial UPS - Cameras | 0.00248221041610477 | Proc | Z3 | LV | Proc | SUB.C |
|  | Telecom | **Telecommunication Network** |  | 2026-01-21 | 2026-04-05 |  |  |  |  |  |  |  |  |  |  |  |  |  |  |
| DMM2-Proc-Delv-4758 |  | Manuf. & Delivery for HDPE Ducts Materials | 9d | 2026-01-21 A | 2026-02-01 A | DMM2-Proc-PO-088, DMM2-Proc-Delv-3018 | 100% |  |  |  |  |  | Labor [260.95 h]; Operator [260.95 h]; Mobile Crane [120 h]; (6*50mm) HDPE ducts; (6*50mm+2*32mm) HDPE ducts; (6*50mm+4*32mm) HDPE ducts; (2*32mm) HDPE ducts; (4*32mm) HDPE ducts; (6*50mm+6*32mm) HDPE ducts; Road crossing ducts, (6*50mm) HDPE; Road crossing ducts, (6*50mm+4*32mm) HDPE; Road crossing ducts, (2*32mm) HDPE | 0.0937537338097808 | Proc | Z3 | Telecom | Proc | SUB.C |
| DMM2-Proc-Delv-4768 |  | Manuf. & Delivery for Manholes Type 1&2 Materials | 14d | 2026-03-15 A | 2026-04-05 A | DMM2-Proc-PO-089, DMM2-Proc-Delv-3028 | 100% |  |  |  |  |  | Labor [173.97 h]; Operator [173.97 h]; Mobile Crane [80 h]; Manhole Type 1; Manhole Type 2 | 0.0151506838424106 | Proc | Z3 | Telecom | Proc | SUB.C |
|  | SL | **Street Lighting** |  | 2026-02-10 | 2026-10-22 |  |  |  |  |  |  |  |  |  |  |  |  |  |  |
| DMM2-Proc-Delv-4798 |  | Manuf. & Delivery for SL Poles Materials (90.00% Completed) | 171.75d | 2026-02-10 A | 2026-09-15 A | DMM2-Proc-PO-092, DMM2-Proc-Delv-3058 | 100% |  |  |  |  |  | Labor [391.43 h]; Operator [391.43 h]; Mobile Crane [180 h]; Lighting poles with 2 arms, height of ( 10) meters; Lighting poles with 1 arm, height of ( 10) meters; Lighting poles with 1 arm, height of ( 12 ) meters; Lighting poles with 2 arms , height of (16 ) meters | 0.169890889418596 | Proc | Z3 | SL | Proc | SUB.C |
| DMM2-Proc-Delv-4778 |  | Manuf. & Delivery for SL Pillars Materials (90.00% Completed) | 145d | 2026-03-26 A | 2026-09-15 A | DMM2-Proc-PO-090, DMM2-Proc-Delv-3038 SS, DMM2-Proc-Delv-7199 SS | 100% |  |  |  |  |  | Labor [626.29 h]; Operator [626.29 h]; Mobile Crane [288 h]; Street Lighting Feeder pillars, work shall include earthing for the lighting pillars. | 0.00205394171755149 | Proc | Z3 | SL | Proc | SUB.C |
| DMM2-Proc-Delv-4788 |  | Manuf. & Delivery for SL Cables Materials (90.00% Completed) | 134d | 2026-04-08 A | 2026-09-15 A | DMM2-Proc-PO-091, DMM2-Proc-Delv-3048, DMM2-Proc-Delv-3048 FF | 100% |  |  |  |  |  | Labor [391.43 h]; Operator [391.43 h]; Mobile Crane [180 h]; SL Cable, Copper 4x10mm2/ CU/XLPE/SWA/PVC + 1x10mm2 CU/PVC; Cable, Copper 4x16mm2/ CU/XLPE/SWA/PVC + 1x16mm2 CU/PVC | 0.038690028419622 | Proc | Z3 | SL | Proc | SUB.C |
| DMM2-Proc-Delv-4808 |  | Manuf. & Delivery for SL Luminares Materials (90.00% Completed) | 131d | 2026-04-12 A | 2026-09-15 A | DMM2-Proc-PO-093, DMM2-Proc-Delv-3068 SS | 100% |  |  |  |  |  | Labor [313.14 h]; Operator [313.14 h]; Mobile Crane [144 h]; Street Lighting( LED), Lamp Lumen: 14560, Luminare Lumen:12700 , complete with control gear and lamp, (80) WATT.; Street Lighting( LED), Lamp Lumen: 24286, Luminare Lumen:20914, complete with control gear and lamp, (140) WATT.; Street Lighting( LED), Lamp Lumen: 34805, Luminare Lumen:28310, complete with control gear and lamp, (190) WATT. | 0.0208402075983495 | Proc | Z3 | SL | Proc | SUB.C |
| DMM2-Proc-Delv-4808_R |  | Manuf. & Delivery for SL Luminares Materials(Rem) | 10d | 2026-08-30 A | 2026-10-21 | DMM2-Proc-PO-093, DMM2-Proc-Delv-3068_R SS, DMM2-Proc-Delv-4808 | 90% | 1d | 2026-10-07 | 2026-10-18 | 112.32d |  | Labor [34.79 h]; Operator [34.79 h]; Mobile Crane [16 h]; Street Lighting( LED), Lamp Lumen: 14560, Luminare Lumen:12700 , complete with control gear and lamp, (80) WATT.; Street Lighting( LED), Lamp Lumen: 24286, Luminare Lumen:20914, complete with control gear and lamp, (140) WATT.; Street Lighting( LED), Lamp Lumen: 34805, Luminare Lumen:28310, complete with control gear and lamp, (190) WATT. | 0.0208402075983495 | Proc | Z3 | SL | Proc | SUB.C |
| DMM2-Proc-Delv-4788_R |  | Manuf. & Delivery for SL Cables Materials(Rem) | 10d | 2026-09-13 A | 2026-10-21 | DMM2-Proc-PO-091, DMM2-Proc-Delv-3048, DMM2-Proc-Delv-3048 FF, DMM2-Proc-Delv-4788 | 90% | 1d | 2026-10-07 | 2026-10-18 | 112.32d |  | Labor [43.49 h]; Operator [43.49 h]; Mobile Crane [20 h]; SL Cable, Copper 4x10mm2/ CU/XLPE/SWA/PVC + 1x10mm2 CU/PVC; Cable, Copper 4x16mm2/ CU/XLPE/SWA/PVC + 1x16mm2 CU/PVC | 0.038690028419622 | Proc | Z3 | SL | Proc | SUB.C |
| DMM2-Proc-Delv-4798_R |  | Manuf. & Delivery for SL Poles Materials(Rem) | 10d | 2026-09-19 A | 2026-10-21 | DMM2-Proc-PO-092, DMM2-Proc-Delv-3058, DMM2-Proc-Delv-4798 | 90% | 1d | 2026-10-07 | 2026-10-18 | 112.32d |  | Labor [43.49 h]; Operator [43.49 h]; Mobile Crane [20 h]; Lighting poles with 2 arms, height of ( 10) meters; Lighting poles with 1 arm, height of ( 10) meters; Lighting poles with 1 arm, height of ( 12 ) meters; Lighting poles with 2 arms , height of (16 ) meters | 0.169890889418596 | Proc | Z3 | SL | Proc | SUB.C |
| DMM2-Proc-Delv-4778_R |  | Manuf. & Delivery for SL Pillars Materials(Rem) | 20d | 2026-09-21 A | 2026-10-22 | DMM2-Proc-PO-090, DMM2-Proc-Delv-3038_R SS, DMM2-Proc-Delv-7199_R SS, DMM2-Proc-Delv-4778 | 90% | 2d | 2026-10-07 | 2026-10-29 | 111.32d |  | Labor [69.59 h]; Operator [69.59 h]; Mobile Crane [32 h]; Street Lighting Feeder pillars, work shall include earthing for the lighting pillars. | 0.00205394171755149 | Proc | Z3 | SL | Proc | SUB.C |

| ID | WBS | Activity | Duration | Start | Finish | Predecessors | Complete | Remaining | Planned start | Planned finish | Total float | Free float | Resources | Weight % | DMM2 Weekly Progress | DMM2 Zones | Networks & Stations | DMM2 Phases | UNASCO | Subcontractors works |
| --- | --- | --- | --- | --- | --- | --- | --- | --- | --- | --- | --- | --- | --- | --- | --- | --- | --- | --- | --- | --- |
|  | Zone 04 | **Zone 04** |  | 2025-12-09 | 2026-10-31 |  |  |  |  |  |  |  |  |  |  |  |  |  |  |  |
|  | SDS | **Wet Networks & Stations** |  | 2025-12-09 | 2026-10-31 |  |  |  |  |  |  |  |  |  |  |  |  |  |  |  |
|  | Sewer | **Sewerage Network** |  | 2026-01-10 | 2026-04-16 |  |  |  |  |  |  |  |  |  |  |  |  |  |  |  |
| DMM2-Proc-Delv-7108 |  | Manuf. & Delivery for GRP Pipes Materials | 72.6d | 2026-01-10 A | 2026-04-16 A | DMM2-Proc-Delv-5368 | 100% |  |  |  |  |  | Labor [347.94 h]; Operator [347.94 h]; Mobile Crane [160 h]; Sew Dia. 150mm Depth: 1.51m - 2.5m; Sew Dia. 150mm Depth: 2.51m - 3.5m; Sew Dia. 200mm Depth: 1.51m - 2.5m; Sew Dia. 200mm Depth: 2.51m - 3.5m; Sew Dia. 200mm Depth: 3.51m - 4.5m; Sew Dia. 200mm Depth: 4.51m -5.5m | 0.0880800996935937 | Proc | Z4 | Sew | Proc | PR.UNSC | SUB.C |
| DMM2-Proc-Delv-7118 |  | Manuf. & Delivery for Inlet Manholes Materials | 4.88d | 2026-03-04 A | 2026-03-11 A | DMM2-Proc-PO-013, DMM2-Proc-Delv-5378 | 100% |  |  |  |  |  | Labor [434.92 h]; Operator [434.92 h]; Mobile Crane [200 h]; MH depth 0 - 1.5m; MH depth 1.51 - 2.5m; MH depth 2.51 - 3.5m; MH depth 3.51 -4.5m; MH depth 3.51- 4.5 m with back drop | 0.064610252368078 | Proc | Z4 | Sew | Proc | PR.UNSC | SUB.C |
|  | Storm | **Storm Network** |  | 2026-01-26 | 2026-10-07 |  |  |  |  |  |  |  |  |  |  |  |  |  |  |  |
| DMM2-Proc-Delv-5728 |  | Manuf. & Delivery for GRP Pipes Materials | 33.65d | 2026-01-26 A | 2026-03-12 A | DMM2-Proc-Delv-3988 | 100% |  |  |  |  |  | Labor [347.94 h]; Operator [347.94 h]; Mobile Crane [160 h]; Depth: 1.51m - 2.5m; 1.51m - 2.5m; 2.51m - 3.5m | 0.114159818120135 | Proc | Z4 | Storm | Proc | PR.UNSC | SUB.C |
| DMM2-Proc-Delv-5748 |  | Manuf. & Delivery for Inlet Manholes Materials (90.00% Completed) | 141.67d | 2026-03-30 A | 2026-09-15 A | DMM2-Proc-PO-013, DMM2-Proc-Delv-4008 | 100% |  |  |  |  |  | Labor [391.43 h]; Operator [391.43 h]; Mobile Crane [180 h]; MH depth 1.50 - 2.5m; Storm MH depth 1.50 - 2.5m; Storm MH depth 2.51 - 3.5m | 0.0221404769036441 | Proc | Z4 | Storm | Proc | PR.UNSC | SUB.C |
| DMM2-Proc-Delv-5758 |  | Manuf. & Delivery for Concrete Chambers & Catch Basin Materials (40.05% Completed) | 127d | 2026-04-16 A | 2026-09-15 A | DMM2-Proc-Delv-5748 FF | 100% |  |  |  |  |  | Labor [174.2 h]; Operator [174.2 h]; Mobile Crane [80.11 h]; Single Catch basin; Double Catch basin | 0.046608235566154 | Proc | Z4 | Storm | Proc | PR.UNSC | SUB.C |
| DMM2-Proc-Delv-5758_R |  | Manuf. & Delivery for Concrete Chambers & Catch Basin Materials(Rem) | 15d | 2026-09-19 A | 2026-10-07 A | DMM2-Proc-Delv-5748_R FF, DMM2-Proc-Delv-5758 | 100% |  | 2026-10-07 | 2026-10-24 |  |  | Labor [260.72 h]; Operator [260.72 h]; Mobile Crane [119.89 h]; Single Catch basin; Double Catch basin | 0.046608235566154 | Proc | Z4 | Storm | Proc | PR.UNSC | SUB.C |
| DMM2-Proc-Delv-5748_R |  | Manuf. & Delivery for Inlet Manholes Materials(Rem) | 10d | 2026-09-25 A | 2026-09-28 A | DMM2-Proc-PO-013, DMM2-Proc-Delv-4008, DMM2-Proc-Delv-5748 | 100% |  | 2026-09-16 | 2026-09-28 |  |  | Labor [43.49 h]; Operator [43.49 h]; Mobile Crane [20 h]; MH depth 1.50 - 2.5m; Storm MH depth 1.50 - 2.5m; Storm MH depth 2.51 - 3.5m | 0.0221404769036441 | Proc | Z4 | Storm | Proc | PR.UNSC | SUB.C |
|  | Potable | **Potable Network** |  | 2026-01-31 | 2026-10-07 |  |  |  |  |  |  |  |  |  |  |  |  |  |  |  |
| DMM2-Proc-Delv-5818 |  | Manuf. & Delivery for HDPE Pipes Materials | 62.53d | 2026-01-31 A | 2026-04-26 A | DMM2-Proc-PO-020, DMM2-Proc-Delv-4078 | 100% |  |  |  |  |  | Labor [347.94 h]; Operator [347.94 h]; Mobile Crane [160 h]; Depth: 0.0m - 1.5m; Depth: 1.51m - 2.5m | 0.0245152167981923 | Proc | Z4 | Potable | Proc | PR.UNSC | SUB.C |
| DMM2-Proc-Delv-5828 |  | Manuf. & Delivery for Valves Materials | 67.72d | 2026-03-09 A | 2026-06-07 A | DMM2-Proc-PO-021, DMM2-Proc-Delv-4088 | 100% |  |  |  |  |  | Labor [521.91 h]; Operator [521.91 h]; Mobile Crane [240 h]; POT Gate V dia 110 mm; POT Wash out valve Dia. 100 mm on pipes with Dia. 110-400 mm; POT Air valve Dia. 50 mm on pipes with Dia. less than 315 mm | 0.00249059745514056 | Proc | Z4 | Potable | Proc | PR.UNSC | SUB.C |
| DMM2-Proc-Delv-5838 |  | Manuf. & Delivery for Valves Chambers Materials (80.00% Completed) | 83.4d | 2026-06-10 A | 2026-09-15 A | DMM2-Proc-PO-022, DMM2-Proc-Delv-4098 SS | 100% |  |  |  |  |  | Labor [208.76 h]; Operator [208.76 h]; Mobile Crane [96 h]; Wash out valve chamber; on 110-400 mm Dia. pipeline; Air valve chamber; on less than 315 mm Dia. pipeline | 0.0108027490607919 | Proc | Z4 | Potable | Proc | PR.UNSC | SUB.C |
| DMM2-Proc-Delv-5838_R |  | Manuf. & Delivery for Valves Chambers Materials(Rem) | 3d | 2026-09-27 A | 2026-10-07 A | DMM2-Proc-PO-022, DMM2-Proc-Delv-4098_R SS, DMM2-Proc-Delv-5838 | 100% |  | 2026-09-16 | 2026-09-19 |  |  | Labor [52.19 h]; Operator [52.19 h]; Mobile Crane [24 h]; Wash out valve chamber; on 110-400 mm Dia. pipeline; Air valve chamber; on less than 315 mm Dia. pipeline | 0.0108027490607919 | Proc | Z4 | Potable | Proc | PR.UNSC | SUB.C |
|  | Fire Fighting | **Fire Fighting Network** |  | 2026-02-05 | 2026-10-05 |  |  |  |  |  |  |  |  |  |  |  |  |  |  |  |
| DMM2-Proc-Delv-5888 |  | Manuf. & Delivery for HDPE Pipes Materials | 55.8d | 2026-02-05 A | 2026-04-23 A | DMM2-Proc-PO-027, DMM2-Proc-Delv-4148 | 100% |  |  |  |  |  | Labor [260.95 h]; Operator [260.95 h]; Mobile Crane [120 h]; Depth: 0.0m - 1.5m; Depth: 1.51m - 2.5m | 0.0828580956325814 | Proc | Z4 | Fire | Proc | PR.UNSC | SUB.C |
| DMM2-Proc-Delv-5898 |  | Manuf. & Delivery for Valves Materials | 24.75d | 2026-02-08 A | 2026-03-16 A | DMM2-Proc-PO-028, DMM2-Proc-Delv-4158 | 100% |  |  |  |  |  | Labor [521.91 h]; Operator [521.91 h]; Mobile Crane [240 h]; FF Gate V dia 250 mm; FF Wash out valve Dia. 100 mm on pipes with Dia. 110-400 mm; FF Air valve Dia. 50 mm on pipes with Dia. less than 315 mm | 0.00408915809000837 | Proc | Z4 | Fire | Proc | PR.UNSC | SUB.C |
| DMM2-Proc-Delv-7178 |  | Manuf. & Delivery for Fire Hydrant Materials | 51.45d | 2026-04-01 A | 2026-06-04 A | DMM2-Proc-PO-158, DMM2-Proc-Delv-5438 | 100% |  |  |  |  |  | Labor [521.91 h]; Operator [521.91 h]; Mobile Crane [240 h]; 3-outlet fire hydrant (2 x 2.5 inch and 1 x 4.5 inch) in the form of a separate dry vacuum cylinder | 0.0226952366253535 | Proc | Z4 | Fire | Proc | PR.UNSC | SUB.C |
| DMM2-Proc-Delv-5908 |  | Manuf. & Delivery for Valves Chambers Materials (80.00% Completed) | 84d | 2026-06-10 A | 2026-09-15 A | DMM2-Proc-PO-029, DMM2-Proc-Delv-4168 SS | 100% |  |  |  |  |  | Labor [347.94 h]; Operator [347.94 h]; Mobile Crane [160 h]; FF Wash out valve chamber; on 110-400 mm Dia. pipeline; FF Air valve chamber; on less than 315 mm Dia. pipeline | 0.013892091712394 | Proc | Z4 | Fire | Proc | PR.UNSC | SUB.C |
| DMM2-Proc-Delv-5908_R |  | Manuf. & Delivery for Valves Chambers Materials(Rem) | 3d | 2026-09-20 A | 2026-10-05 A | DMM2-Proc-PO-029, DMM2-Proc-Delv-4168_R SS, DMM2-Proc-Delv-5908, DMM2-Proc-Delv-5838_R | 100% |  | 2026-09-20 | 2026-09-22 |  |  | Labor [86.98 h]; Operator [86.98 h]; Mobile Crane [40 h]; FF Wash out valve chamber; on 110-400 mm Dia. pipeline; FF Air valve chamber; on less than 315 mm Dia. pipeline | 0.013892091712394 | Proc | Z4 | Fire | Proc | PR.UNSC | SUB.C |
|  | TSE | **TSE Network** |  | 2025-12-09 | 2026-10-31 |  |  |  |  |  |  |  |  |  |  |  |  |  |  |  |
| DMM2-Proc-Delv-5858 |  | Manuf. & Delivery for HDPE Pipes Materials (90.00% Completed) | 225.61d | 2025-12-09 A | 2026-09-15 A | DMM2-Proc-PO-024, DMM2-Proc-Delv-4118 | 100% |  |  |  |  |  | Labor [93.94 h]; Operator [93.94 h]; Mobile Crane [43.2 h]; Dia. 90mm 0.0m - 1.5m; Dia. 110mm 0.0m - 1.5m | 0.0221770079756051 | Proc | Z4 | TSE | Proc | PR.UNSC | SUB.C |
| DMM2-Proc-Delv-5878 |  | Manuf. & Delivery for Valves Materials (80.00% Completed) | 147.38d | 2026-03-18 A | 2026-09-15 A | DMM2-Proc-PO-026, DMM2-Proc-Delv-4138 | 100% |  |  |  |  |  | Labor [83.51 h]; Operator [83.51 h]; Mobile Crane [38.4 h]; TSE Gate V Dia. 100 mm; TSE Wash out valve Dia. 100 mm on pipes with Dia. 110-400 mm; TSE Air valve Dia. 50 mm on pipes with Dia. less than 315 mm | 0.00238560753480712 | Proc | Z4 | TSE | Proc | PR.UNSC | SUB.C |
| DMM2-Proc-Delv-5878_R |  | Manuf. & Delivery for Valves Materials(Rem) | 2d | 2026-09-02 A | 2026-10-21 | DMM2-Proc-PO-026, DMM2-Proc-Delv-4138, DMM2-Proc-Delv-5878 | 90% | 0.2d | 2026-10-07 | 2026-10-08 | 31.32d | 113.12d | Labor [20.88 h]; Operator [20.88 h]; Mobile Crane [9.6 h]; TSE Gate V Dia. 100 mm; TSE Wash out valve Dia. 100 mm on pipes with Dia. 110-400 mm; TSE Air valve Dia. 50 mm on pipes with Dia. less than 315 mm | 0.00238560753480712 | Proc | Z4 | TSE | Proc | PR.UNSC | SUB.C |
| DMM2-Proc-Delv-5858_R |  | Manuf. & Delivery for HDPE Pipes Materials(Rem) | 2d | 2026-09-12 A | 2026-10-21 | DMM2-Proc-PO-024, DMM2-Proc-Delv-4118, DMM2-Proc-Delv-5858 | 90% | 0.2d | 2026-10-07 | 2026-10-08 | 34.12d | 2.8d | Labor [10.44 h]; Operator [10.44 h]; Mobile Crane [4.8 h]; Dia. 90mm 0.0m - 1.5m; Dia. 110mm 0.0m - 1.5m | 0.0221770079756051 | Proc | Z4 | TSE | Proc | PR.UNSC | SUB.C |
| DMM2-Proc-Delv-5868 |  | Manuf. & Delivery for Solenoid Primary Control Valves Materials | 25d | 2026-09-17 A | 2026-10-31 | DMM2-Proc-PO-025, DMM2-Proc-Delv-4118 | 67% | 8.25d | 2026-10-07 | 2026-11-04 | 58.07d | 0d | Labor [104.38 h]; Operator [104.38 h]; Mobile Crane [48 h]; Solenoid Valve box. 1 Solenoid valve Dia. 1 inch.; Solenoid Valve box. 1 Solenoid valve Dia. 1.5 inch.; Solenoid Valve box. 1 Solenoid valve Dia. 2.0inch. | 0.00134457498547139 | Proc | Z4 | TSE | Proc | PR.UNSC | SUB.C |

| ID | WBS | Activity | Duration | Start | Finish | Predecessors | Complete | Remaining | Planned start | Planned finish | Total float | Free float | Resources | Weight % | DMM2 Weekly Progress | DMM2 Zones | Networks & Stations | DMM2 Phases | Subcontractors works |
| --- | --- | --- | --- | --- | --- | --- | --- | --- | --- | --- | --- | --- | --- | --- | --- | --- | --- | --- | --- |
|  | SDS1 | **Dry Networks** |  | 2026-01-15 | 2026-10-27 |  |  |  |  |  |  |  |  |  |  |  |  |  |  |
|  | MV | **Medium Voltage Network** |  | 2026-01-15 | 2026-10-27 |  |  |  |  |  |  |  |  |  |  |  |  |  |  |
| DMM2-Proc-Delv-6438 |  | Manuf. & Delivery for MV Cables Materials | 0.25d | 2026-01-15 A | 2026-01-17 A | DMM2-Proc-PO-082, DMM2-Proc-Delv-4698 | 100% |  |  |  |  |  | Labor [434.92 h]; Operator [434.92 h]; Mobile Crane [200 h]; Cable 13.8 kV 3Cx 500 mm² Al XLPE,/LLDPE / Unarmored; Copper Cable 13.8 kV 3Cx 50 mm² CU/XLPE/STA/PVC | 0.108037942881182 | Proc | Z4 | MV | Proc | SUB.C |
| DMM2-Proc-Delv-6458 |  | Manuf. & Delivery for Unit Substation Materials (80.11% Completed) | 172.75d | 2026-02-09 A | 2026-09-15 A | DMM2-Proc-PO-084, DMM2-Proc-Delv-4718 SS | 100% |  |  |  |  |  | Labor [696.8 h]; Operator [696.8 h]; Mobile Crane [320.43 h]; Unit Substation 13.8/0.4 K V, 500kVA | 0.0114785342669208 | Proc | Z4 | MV | Proc | SUB.C |
| DMM2-Proc-Delv-6468 |  | Manuf. & Delivery for RMU Materials (80.11% Completed) | 172.75d | 2026-02-09 A | 2026-09-15 A | DMM2-Proc-PO-085, DMM2-Proc-Delv-4728 SS | 100% |  |  |  |  |  | Labor [418.08 h]; Operator [418.08 h]; Mobile Crane [192.26 h]; RMU, 13.8KV | 0.00501093374088928 | Proc | Z4 | MV | Proc | SUB.C |
| DMM2-Proc-Delv-6458_R |  | Manuf. & Delivery for Unit Substation Materials(Rem) | 20d | 2026-09-12 A | 2026-10-22 | DMM2-Proc-PO-084, DMM2-Proc-Delv-4718_R SS, DMM2-Proc-Delv-6458, DMM2-Proc-Delv-4788_R | 90% | 2d | 2026-10-19 | 2026-11-10 | 108.32d | 45.41d | Labor [173.04 h]; Operator [173.04 h]; Mobile Crane [79.57 h]; Unit Substation 13.8/0.4 K V, 500kVA | 0.0114785342669208 | Proc | Z4 | MV | Proc | SUB.C |
| DMM2-Proc-Delv-6468_R |  | Manuf. & Delivery for RMU Materials(Rem) | 20d | 2026-09-19 A | 2026-10-27 | DMM2-Proc-PO-085, DMM2-Proc-Delv-4728_R SS, DMM2-Proc-Delv-6468 | 70% | 6d | 2026-10-07 | 2026-10-29 | 38.32d | 10d | Labor [103.82 h]; Operator [103.82 h]; Mobile Crane [47.74 h]; RMU, 13.8KV | 0.00501093374088928 | Proc | Z4 | MV | Proc | SUB.C |
|  | LV | **Low Voltage Network** |  | 2026-04-25 | 2026-09-10 |  |  |  |  |  |  |  |  |  |  |  |  |  |  |
| DMM2-Proc-Delv-6478 |  | Manuf. & Delivery for LV Cables Materials | 115.19d | 2026-04-25 A | 2026-09-10 A | DMM2-Proc-PO-086, DMM2-Proc-Delv-4738 | 100% |  |  |  |  |  | Labor [104.38 h]; Operator [104.38 h]; Mobile Crane [48 h]; Cable, Copper 4x10mm2/ CU/XLPE/SWA/PVC + 1x10mm2 CU/PVC; Cable, Copper 4x50mm2/ CU/XLPE/PVC +1x25mm2 CU/PVC | 0.0251205731914563 | Proc | Z4 | LV | Proc | SUB.C |
|  | Telecom | **Telecommunication Network** |  | 2026-01-21 | 2026-04-15 |  |  |  |  |  |  |  |  |  |  |  |  |  |  |
| DMM2-Proc-Delv-6498 |  | Manuf. & Delivery for HDPE Ducts Materials | 9d | 2026-01-21 A | 2026-02-01 A | DMM2-Proc-PO-088, DMM2-Proc-Delv-4758 | 100% |  |  |  |  |  | Labor [260.95 h]; Operator [260.95 h]; Mobile Crane [120 h]; (6*50mm) HDPE ducts; (6*50mm+2*32mm) HDPE ducts; (6*50mm+4*32mm) HDPE ducts; (2*32mm) HDPE ducts; Road crossing ducts, (6*50mm) HDPE | 0.0894037560718142 | Proc | Z4 | Telecom | Proc | SUB.C |
| DMM2-Proc-Delv-6508 |  | Manuf. & Delivery for Manholes Type 1&2 Materials | 3d | 2026-04-13 A | 2026-04-15 A | DMM2-Proc-PO-089, DMM2-Proc-Delv-4768 | 100% |  |  |  |  |  | Labor [191.37 h]; Operator [191.37 h]; Mobile Crane [88 h]; Manhole Type 1; Manhole Type 2 | 0.0151506838424106 | Proc | Z4 | Telecom | Proc | SUB.C |
|  | SL | **Street Lighting** |  | 2026-02-03 | 2026-10-24 |  |  |  |  |  |  |  |  |  |  |  |  |  |  |
| DMM2-Proc-Delv-6548 |  | Manuf. & Delivery for SL Luminares Materials (90.00% Completed) | 177.75d | 2026-02-03 A | 2026-09-15 A | DMM2-Proc-PO-093, DMM2-Proc-Delv-4808 SS | 100% |  |  |  |  |  | Labor [313.14 h]; Operator [313.14 h]; Mobile Crane [144 h]; Street Lighting( LED), Lamp Lumen: 14560, Luminare Lumen:12700 , complete with control gear and lamp, (80) WATT. | 0.0135413940737668 | Proc | Z4 | SL | Proc | SUB.C |
| DMM2-Proc-Delv-6538 |  | Manuf. & Delivery for SL Poles Materials (90.00% Completed) | 169d | 2026-02-13 A | 2026-09-15 A | DMM2-Proc-PO-092, DMM2-Proc-Delv-4798 SS | 100% |  | 2026-02-14 | 2026-09-15 |  |  | Labor [391.43 h]; Operator [391.43 h]; Mobile Crane [180 h]; Lighting poles with 1 arm, height of ( 10) meters | 0.103640609462173 | Proc | Z4 | SL | Proc | SUB.C |
| DMM2-Proc-Delv-6528 |  | Manuf. & Delivery for SL Cables Materials | 162.25d | 2026-02-17 A | 2026-09-12 A | DMM2-Proc-PO-091 | 100% |  |  |  |  |  | Labor [434.92 h]; Operator [434.92 h]; Mobile Crane [200 h]; SL Cable, Copper 4x10mm2/ CU/XLPE/SWA/PVC + 1x10mm2 CU/PVC | 0.0326337276746916 | Proc | Z4 | SL | Proc | SUB.C |
| DMM2-Proc-Delv-6518 |  | Manuf. & Delivery for SL Pillars Materials (50.00% Completed) | 51d | 2026-07-19 A | 2026-09-15 A | DMM2-Proc-PO-090, DMM2-Proc-Delv-4748 SS, DMM2-Proc-Delv-4778 SS | 100% |  |  |  |  |  | Labor [347.94 h]; Operator [347.94 h]; Mobile Crane [160 h]; Street Lighting Feeder pillars, work shall include earthing for the lighting pillars. | 0.00205394171755149 | Proc | Z4 | SL | Proc | SUB.C |
| DMM2-Proc-Delv-6518_R |  | Manuf. & Delivery for SL Pillars Materials(Rem) | 20d | 2026-09-12 A | 2026-10-22 | DMM2-Proc-PO-090, DMM2-Proc-Delv-4748_R SS, DMM2-Proc-Delv-4778_R SS, DMM2-Proc-Delv-6518 | 90% | 2d | 2026-10-07 | 2026-10-29 | 105.32d | 7.64d | Labor [347.94 h]; Operator [347.94 h]; Mobile Crane [160 h]; Street Lighting Feeder pillars, work shall include earthing for the lighting pillars. | 0.00205394171755149 | Proc | Z4 | SL | Proc | SUB.C |
| DMM2-Proc-Delv-6538_R |  | Manuf. & Delivery for SL Poles Materials(Rem) | 10d | 2026-09-12 A | 2026-10-21 | DMM2-Proc-PO-092, DMM2-Proc-Delv-4798_R SS, DMM2-Proc-Delv-6538 | 90% | 1d | 2026-10-07 | 2026-10-18 | 112.32d |  | Labor [43.49 h]; Operator [43.49 h]; Mobile Crane [20 h]; Lighting poles with 1 arm, height of ( 10) meters | 0.103640609462173 | Proc | Z4 | SL | Proc | SUB.C |
| DMM2-Proc-Delv-6548_R |  | Manuf. & Delivery for SL Luminares Materials(Rem) | 10d | 2026-09-17 A | 2026-10-24 | DMM2-Proc-PO-093, DMM2-Proc-Delv-4808_R SS, DMM2-Proc-Delv-6548 | 70% | 3d | 2026-10-07 | 2026-10-18 | 110.32d |  | Labor [34.79 h]; Operator [34.79 h]; Mobile Crane [16 h]; Street Lighting( LED), Lamp Lumen: 14560, Luminare Lumen:12700 , complete with control gear and lamp, (80) WATT. | 0.0135413940737668 | Proc | Z4 | SL | Proc | SUB.C |
|  | Short Lead | **Short Lead Items** |  | 2025-10-05 | 2026-11-10 |  |  |  |  |  |  |  |  |  |  |  |  |  |  |
|  | Zone 01 | **Zone 01** |  | 2025-10-05 | 2026-11-10 |  |  |  |  |  |  |  |  |  |  |  |  |  |  |
|  | Site Grading | **Earth & Road Works** |  | 2025-10-05 | 2026-11-10 |  |  |  |  |  |  |  |  |  |  |  |  |  |  |
| DMM2-Proc-Delv-7200 |  | Manuf. & Delivery for Embankment & Backfilling Materials | 37.38d | 2025-10-05 A | 2025-11-17 A | DMM2-Proc-PO-01, DMM2-Eng-PQ-238, DMM2-Eng-SD-02, DMM2-Eng-PQ-208 | 100% |  |  |  |  |  | Labor [243.56 h]; Operator [243.56 h]; Mobile Crane [112 h] |  | Proc | Z1 | Roads | Proc |  |
| DMM2-Proc-Delv-7203 |  | Manuf. & Delivery for Subgrade Materials | 128.24d | 2025-11-18 A | 2026-04-29 A | DMM2-Proc-PO-04, DMM2-Proc-Delv-7200 | 100% |  |  |  |  |  | Labor [208.76 h]; Operator [208.76 h]; Mobile Crane [96 h] |  | Proc | Z1 | Roads | Proc |  |
| DMM2-Proc-Delv-7201 |  | Manuf. & Delivery for Agg. Base Coarse (90.00% Completed) | 112.76d | 2026-05-03 A | 2026-09-15 A | DMM2-Proc-PO-02, DMM2-Proc-Delv-7203 | 100% |  |  |  |  |  | Labor [187.89 h]; Operator [187.89 h]; Mobile Crane [86.4 h] |  | Proc | Z1 | Roads | Proc |  |
| DMM2-Proc-Delv-7202 |  | Manuf. & Delivery for Asphalt Materials (40.00% Completed) | 90.76d | 2026-06-02 A | 2026-09-15 A | DMM2-Proc-PO-03, DMM2-Proc-Delv-7201 SS | 100% |  |  |  |  |  | Labor [104.38 h]; Operator [104.38 h]; Mobile Crane [48 h] |  | Proc | Z1 | Roads | Proc |  |
| DMM2-Proc-Delv-7204 |  | Manuf. & Delivery for Curbstone Materials (0.00% Completed) | 18d | 2026-08-26 A | 2026-09-15 A | DMM2-Proc-PO-05 | 100% |  |  |  |  |  | Labor; Operator; Mobile Crane |  | Proc | Z1 | Roads | Proc |  |
| DMM2-Proc-Delv-7206 |  | Manuf. & Delivery for Pavement Markings Materials | 10d | 2026-09-01 A | 2026-10-21 | DMM2-Proc-PO-07, DMM2-Proc-Delv-7204_R, DMM2-Proc-Delv-7200 | 90% | 1d | 2026-10-15 | 2026-10-27 | 112.32d |  | Labor [173.97 h]; Operator [173.97 h]; Mobile Crane [80 h] |  | Proc | Z1 | Roads | Proc |  |
| DMM2-Proc-Delv-7204_R |  | Manuf. & Delivery for Curbstone Materials(Rem) | 13d | 2026-09-19 A | 2026-10-29 | DMM2-Proc-Delv-7205 FF, DMM2-Proc-PO-05, DMM2-Proc-Delv-7204 | 62% | 4.94d | 2026-09-19 | 2026-10-04 | 105.82d |  | Labor [139.18 h]; Operator [139.18 h]; Mobile Crane [64 h] |  | Proc | Z1 | Roads | Proc |  |
| DMM2-Proc-Delv-7207 |  | Manuf. & Delivery for Wheels Stopper (precast concrete) Materials | 2d | 2026-09-25 A | 2026-10-21 | DMM2-Proc-PO-08, DMM2-Proc-Delv-7503 FF | 85% | 0.3d | 2026-11-12 | 2026-11-15 | 113.02d |  | Labor [173.97 h]; Operator [173.97 h]; Mobile Crane [80 h] |  | Proc | Z1 | Roads | Proc |  |
| DMM2-Proc-Delv-7208 |  | Manuf. & Delivery for Traffic Signs Materials | 10d | 2026-09-25 A | 2026-10-22 | DMM2-Proc-PO-09, DMM2-Proc-Delv-7206 | 85% | 1.5d | 2026-10-27 | 2026-11-08 | 111.82d |  | Labor [173.97 h]; Operator [173.97 h]; Mobile Crane [80 h] |  | Proc | Z1 | Roads | Proc |  |
| DMM2-Proc-Delv-7209 |  | Manuf. & Delivery for ground Mounted Information Signs Materials | 10d | 2026-09-25 A | 2026-10-22 | DMM2-Proc-PO-010 | 85% | 1.5d | 2026-10-28 | 2026-11-08 | 111.82d |  | Labor [347.94 h]; Operator [347.94 h]; Mobile Crane [160 h] |  | Proc | Z1 | Roads | Proc |  |
| DMM2-Proc-Delv-7201_R |  | Manuf. & Delivery for Agg. Base Coarse(Rem) | 31d | 2026-09-27 A | 2026-11-08 | DMM2-Proc-PO-02, DMM2-Proc-Delv-7203, DMM2-Proc-Delv-7201 | 50% | 15.5d | 2026-09-16 | 2026-10-22 | 97.82d |  | Labor [20.88 h]; Operator [20.88 h]; Mobile Crane [9.6 h] |  | Proc | Z1 | Roads | Proc |  |
| DMM2-Proc-Delv-7202_R |  | Manuf. & Delivery for Asphalt Materials(Rem) | 35d | 2026-09-29 A | 2026-11-10 | DMM2-Proc-PO-03, DMM2-Proc-Delv-7201_R SS, DMM2-Proc-Delv-7202 | 50% | 17.5d | 2026-09-16 | 2026-10-27 | 40.82d | 0d | Labor [156.57 h]; Operator [156.57 h]; Mobile Crane [72 h] |  | Proc | Z1 | Roads | Proc |  |
| DMM2-Proc-Delv-7205 |  | Manuf. & Delivery for Interlock Materials | 15d | 2026-09-30 A | 2026-10-29 | DMM2-Proc-PO-06 | 50% | 7.5d | 2026-09-16 | 2026-10-04 | 105.82d | 0d | Labor [260.95 h]; Operator [260.95 h]; Mobile Crane [120 h] |  | Proc | Z1 | Roads | Proc |  |

| ID | WBS | Activity | Duration | Start | Finish | Predecessors | Complete | Remaining | Planned start | Planned finish | Total float | Free float | Resources | DMM2 Weekly Progress | DMM2 Zones | Networks & Stations | DMM2 Phases | UNASCO |
| --- | --- | --- | --- | --- | --- | --- | --- | --- | --- | --- | --- | --- | --- | --- | --- | --- | --- | --- |
|  | SDS | **Wet Networks & Stations** |  | 2025-12-07 | 2026-10-26 |  |  |  |  |  |  |  |  |  |  |  |  |  |
|  | Storm | **Storm Network** |  | 2025-12-07 | 2025-12-18 |  |  |  |  |  |  |  |  |  |  |  |  |  |
| DMM2-Proc-Delv-7213 |  | Manuf. & Delivery for uPVC Pipes Materials | 10.42d | 2025-12-07 A | 2025-12-18 A | DMM2-Proc-PO-015, DMM2-Proc-PO-014 | 100% |  |  |  |  |  | Labor [452.32 h]; Operator [452.32 h]; Mobile Crane [208 h] | Proc | Z1 | Storm | Proc | PR.UNSC |
|  | TSE | **TSE Network** |  | 2026-08-22 | 2026-10-26 |  |  |  |  |  |  |  |  |  |  |  |  |  |
| DMM2-Proc-Delv-7257 |  | Manuf. & Delivery for Bubbler Materials | 15d | 2026-08-22 A | 2026-10-26 | DMM2-Proc-Delv-648 FF+3d | 90% | 1.5d | 2026-10-19 | 2026-11-04 | 108.32d | 0d | Labor [260.95 h]; Operator [260.95 h]; Mobile Crane [120 h] | Proc | Z1 | TSE | Proc | PR.UNSC |
| DMM2-Proc-Delv-7258 |  | Manuf. & Delivery for Pull Box Materials | 15d | 2026-08-26 A | 2026-10-26 | DMM2-Proc-Delv-648 FF+3d | 90% | 1.5d | 2026-10-19 | 2026-11-04 | 108.32d | 0d | Labor [260.95 h]; Operator [260.95 h]; Mobile Crane [120 h] | Proc | Z1 | TSE | Proc | PR.UNSC |
| DMM2-Proc-Delv-7256 |  | Manuf. & Delivery for Dripper Materials | 15d | 2026-08-29 A | 2026-10-26 | DMM2-Proc-Delv-648 FF+3d | 90% | 1.5d | 2026-10-19 | 2026-11-04 | 108.32d | 0d | Labor [260.95 h]; Operator [260.95 h]; Mobile Crane [120 h] | Proc | Z1 | TSE | Proc | PR.UNSC |
| DMM2-Proc-Delv-7259 |  | Manuf. & Delivery for Two Wire Decoder Cable 12 awg Materials | 15d | 2026-09-12 A | 2026-10-26 | DMM2-Proc-Delv-648 FF+3d | 88% | 1.8d | 2026-10-19 | 2026-11-04 | 46.32d | 0d | Labor [260.95 h]; Operator [260.95 h]; Mobile Crane [120 h] | Proc | Z1 | TSE | Proc | PR.UNSC |
|  | SDS1 | **Dry Networks** |  | 2026-08-27 | 2026-10-21 |  |  |  |  |  |  |  |  |  |  |  |  |  |
|  | MV | **Medium Voltage Network** |  |  |  |  |  |  |  |  |  |  |  |  |  |  |  |  |
|  | SL | **Street Lighting** |  | 2026-08-27 | 2026-10-21 |  |  |  |  |  |  |  |  |  |  |  |  |  |
| DMM2-Proc-Delv-7240 |  | Manuf. & Delivery for SL Earthing Materials | 5d | 2026-08-27 A | 2026-10-21 | DMM2-Proc-PO-094, DMM2-Proc-PO-0147, DMM2-Proc-PO-0140, DMM2-Proc-PO-0127, DMM2-Proc-PO-0111, DMM2-Proc-PO-055, DMM2-Proc-PO-0139, DMM2-Proc-PO-0126 | 90% | 0.5d | 2026-10-19 | 2026-10-24 | 103.82d | 17.82d | Labor [260.95 h]; Operator [260.95 h]; Mobile Crane [120 h] | Proc | Z1 | SL | Proc |  |
| DMM2-Proc-Delv-7241 |  | Manuf. & Delivery for SL Drawpits Materials | 4d | 2026-08-29 A | 2026-10-21 | DMM2-Proc-PO-095, DMM2-Proc-PO-0105, DMM2-Proc-PO-053, DMM2-Proc-PO-0129, DMM2-Proc-PO-0130, DMM2-Proc-PO-0128, DMM2-Proc-PO-198, DMM2-Proc-PO-0123, DMM2-Proc-PO-0104, DMM2-Proc-PO-0121, DMM2-Proc-PO-0135, DMM2-Proc-PO-051, DMM2-Proc-PO-0122, DMM2-Proc-PO-0120, DMM2-Proc-PO-0103, DMM2-Proc-PO-0134, DMM2-Proc-PO-0133, DMM2-Proc-PO-0148, DMM2-Proc-PO-0142 | 90% | 0.4d | 2026-10-24 | 2026-10-27 | 104.92d | 12.6d | Labor [434.92 h]; Operator [434.92 h]; Mobile Crane [200 h] | Proc | Z1 | SL | Proc |  |
|  | Landscape | **Landscape Works** |  | 2026-08-27 | 2026-10-24 |  |  |  |  |  |  |  |  |  |  |  |  |  |
| DMM2-Proc-Delv-7242 |  | Manuf. & Delivery for Trees Materials | 30d | 2026-08-27 A | 2026-10-24 | DMM2-Proc-PO-096 | 90% | 3d | 2026-10-07 | 2026-11-10 | 110.32d |  | Labor [260.95 h]; Operator [260.95 h]; Mobile Crane [120 h] | Proc | Z1 | Landscp | Proc |  |
| DMM2-Proc-Delv-7248 |  | Manuf. & Delivery for Gravel/Stone Mulch Materials | 20d | 2026-09-02 A | 2026-10-22 | DMM2-Proc-PO-0102 | 90% | 2d | 2026-10-07 | 2026-10-29 | 111.32d |  | Labor [173.97 h]; Operator [173.97 h]; Mobile Crane [80 h] | Proc | Z1 | Landscp | Proc |  |
| DMM2-Proc-Delv-7252 |  | Manuf. & Delivery for Vehicle and Pedestrian Steel Gate Materials | 30d | 2026-09-02 A | 2026-10-24 | DMM2-Proc-PO-0106, DMM2-Proc-PO-097 | 90% | 3d | 2026-10-10 | 2026-11-12 | 110.32d |  | Labor [347.94 h]; Operator [347.94 h]; Mobile Crane [160 h] | Proc | Z1 | Landscp | Proc |  |
| DMM2-Proc-Delv-7246 |  | Manuf. & Delivery for Large Shrubs Materials | 12d | 2026-09-12 A | 2026-10-24 | DMM2-Proc-PO-0100 | 80% | 2.4d | 2026-10-07 | 2026-10-20 | 110.92d |  | Labor [208.76 h]; Operator [208.76 h]; Mobile Crane [96 h] | Proc | Z1 | Landscp | Proc |  |
| DMM2-Proc-Delv-7244 |  | Manuf. & Delivery for Geotextile Layers Materials | 30d | 2026-09-13 A | 2026-10-24 | DMM2-Proc-PO-098 | 90% | 3d | 2026-10-07 | 2026-11-10 | 110.32d |  | Labor [173.97 h]; Operator [173.97 h]; Mobile Crane [80 h] | Proc | Z1 | Landscp | Proc |  |
| DMM2-Proc-Delv-7243 |  | Manuf. & Delivery for Ornamental Grasses Materials | 10d | 2026-09-25 A | 2026-10-22 | DMM2-Proc-PO-097, DMM2-Proc-Delv-7247, DMM2-Proc-Delv-7328, DMM2-Proc-PO-0106 | 85% | 1.5d | 2026-12-19 | 2026-12-29 | 111.82d |  | Labor [173.97 h]; Operator [173.97 h]; Mobile Crane [80 h] | Proc | Z1 | Landscp | Proc |  |
| DMM2-Proc-Delv-7245 |  | Manuf. & Delivery for Plastic edge Materials | 10d | 2026-09-25 A | 2026-10-22 | DMM2-Proc-PO-099, DMM2-Proc-Delv-7334 | 85% | 1.5d | 2026-11-19 | 2026-11-30 | 111.82d |  | Labor [173.97 h]; Operator [173.97 h]; Mobile Crane [80 h] | Proc | Z1 | Landscp | Proc |  |
| DMM2-Proc-Delv-7247 |  | Manuf. & Delivery for Plants Materials | 15d | 2026-09-25 A | 2026-10-24 | DMM2-Proc-PO-0101, DMM2-Proc-Delv-7245, DMM2-Proc-Delv-7541 | 85% | 2.25d | 2026-12-01 | 2026-12-17 | 111.07d |  | Labor [260.95 h]; Operator [260.95 h]; Mobile Crane [120 h] | Proc | Z1 | Landscp | Proc |  |
| DMM2-Proc-Delv-7249 |  | Manuf. & Delivery for Fences (ZATCA HCIS) Materials | 10d | 2026-09-25 A | 2026-10-22 | DMM2-Proc-PO-0103, DMM2-Proc-Delv-7250 | 85% | 1.5d | 2026-12-07 | 2026-12-17 | 111.82d |  | Labor [347.94 h]; Operator [347.94 h]; Mobile Crane [160 h] | Proc | Z1 | Landscp | Proc |  |
| DMM2-Proc-Delv-7250 |  | Manuf. & Delivery Prepare & Submit for Fences (MODON) Materials | 10d | 2026-09-25 A | 2026-10-22 | DMM2-Proc-PO-0104, DMM2-Proc-Delv-7251, DMM2-Proc-PO-095 | 85% | 1.5d | 2026-11-25 | 2026-12-06 | 111.82d |  | Labor [347.94 h]; Operator [347.94 h]; Mobile Crane [160 h] | Proc | Z1 | Landscp | Proc |  |
| DMM2-Proc-Delv-7251 |  | Manuf. & Delivery for Vehicle Steel Gate Materials | 10d | 2026-09-25 A | 2026-10-22 | DMM2-Proc-PO-0105, DMM2-Proc-Delv-7252, DMM2-Proc-PO-095 | 85% | 1.5d | 2026-11-14 | 2026-11-24 | 111.82d |  | Labor [347.94 h]; Operator [347.94 h]; Mobile Crane [160 h] | Proc | Z1 | Landscp | Proc |  |

| ID | WBS | Activity | Duration | Start | Finish | Predecessors | Complete | Remaining | Planned start | Planned finish | Total float | Free float | Resources | DMM2 Weekly Progress | DMM2 Zones | Networks & Stations | DMM2 Phases | UNASCO |
| --- | --- | --- | --- | --- | --- | --- | --- | --- | --- | --- | --- | --- | --- | --- | --- | --- | --- | --- |
|  | Zone 02 | **Zone 02** |  | 2025-10-22 | 2026-11-10 |  |  |  |  |  |  |  |  |  |  |  |  |  |
|  | Site Grading | **Earth & Road Works** |  | 2025-10-22 | 2026-11-10 |  |  |  |  |  |  |  |  |  |  |  |  |  |
| DMM2-Proc-Delv-7263 |  | Manuf. & Delivery for Embankment & Backfilling Materials | 113.7d | 2025-10-22 A | 2026-03-09 A | DMM2-Proc-PO-01, DMM2-Proc-Delv-7200 | 100% |  |  |  |  |  | Labor [243.5 h]; Operator [243.5 h]; Mobile Crane [112 h] | Proc | Z2 | Roads | Proc |  |
| DMM2-Proc-Delv-7266 |  | Manuf. & Delivery for Subgrade Materials | 112.86d | 2025-12-07 A | 2026-04-29 A | DMM2-Proc-PO-04, DMM2-Proc-Delv-7203 | 100% |  |  |  |  |  | Labor [173.97 h]; Operator [173.97 h]; Mobile Crane [80 h] | Proc | Z2 | Roads | Proc |  |
| DMM2-Proc-Delv-7264 |  | Manuf. & Delivery for Agg. Base Coarse (30.00% Completed) | 104.76d | 2026-05-12 A | 2026-09-15 A | DMM2-Proc-PO-02, DMM2-Proc-Delv-7201 SS | 100% |  |  |  |  |  | Labor [52.19 h]; Operator [52.19 h]; Mobile Crane [24 h] | Proc | Z2 | Roads | Proc |  |
| DMM2-Proc-Delv-7265 |  | Manuf. & Delivery for Asphalt Materials | 10d | 2026-09-17 A | 2026-11-10 | DMM2-Proc-PO-03, DMM2-Proc-Delv-7202_R FF | 50% | 5d | 2026-10-17 | 2026-10-27 | 40.82d | 20d | Labor [260.95 h]; Operator [260.95 h]; Mobile Crane [120 h] | Proc | Z2 | Roads | Proc |  |
| DMM2-Proc-Delv-7264_R |  | Manuf. & Delivery for Agg. Base Coarse(Rem) | 7d | 2026-09-23 A | 2026-10-25 | DMM2-Proc-PO-02, DMM2-Proc-Delv-7201_R SS, DMM2-Proc-Delv-7264 | 50% | 3.5d | 2026-09-16 | 2026-09-24 | 109.82d |  | Labor [121.78 h]; Operator [121.78 h]; Mobile Crane [56 h] | Proc | Z2 | Roads | Proc |  |
| DMM2-Proc-Delv-7269 |  | Manuf. & Delivery for Pavement Markings Materials | 10d | 2026-09-25 A | 2026-10-22 | DMM2-Proc-PO-07, DMM2-Proc-Delv-7206 | 85% | 1.5d | 2026-10-27 | 2026-11-08 | 111.82d |  | Labor [173.97 h]; Operator [173.97 h]; Mobile Crane [80 h] | Proc | Z2 | Roads | Proc |  |
| DMM2-Proc-Delv-7270 |  | Manuf. & Delivery for Wheels Stopper (precast concrete) Materials | 2d | 2026-09-25 A | 2026-10-21 | DMM2-Proc-PO-08, DMM2-Proc-Delv-7207 SS | 85% | 0.3d | 2026-11-12 | 2026-11-15 | 113.02d |  | Labor [173.97 h]; Operator [173.97 h]; Mobile Crane [80 h] | Proc | Z2 | Roads | Proc |  |
| DMM2-Proc-Delv-7271 |  | Manuf. & Delivery for Traffic Signs Materials | 10d | 2026-09-25 A | 2026-10-22 | DMM2-Proc-PO-09, DMM2-Proc-Delv-7208 | 85% | 1.5d | 2026-11-08 | 2026-11-19 | 111.82d |  | Labor [173.97 h]; Operator [173.97 h]; Mobile Crane [80 h] | Proc | Z2 | Roads | Proc |  |
| DMM2-Proc-Delv-7272 |  | Manuf. & Delivery for ground Mounted Information Signs Materials | 10d | 2026-09-25 A | 2026-10-22 | DMM2-Proc-PO-010, DMM2-Proc-Delv-7209 | 85% | 1.5d | 2026-11-09 | 2026-11-19 | 107.82d | 19.82d | Labor [347.94 h]; Operator [347.94 h]; Mobile Crane [160 h] | Proc | Z2 | Roads | Proc |  |
| DMM2-Proc-Delv-7267 |  | Manuf. & Delivery for Curbstone Materials | 8d | 2026-10-05 A | 2026-10-25 | DMM2-Proc-PO-05, DMM2-Proc-Delv-7204_R | 50% | 4d | 2026-10-05 | 2026-10-13 | 47.32d | 7d | Labor [139.18 h]; Operator [139.18 h]; Mobile Crane [64 h] | Proc | Z2 | Roads | Proc |  |
| DMM2-Proc-Delv-7268 |  | Manuf. & Delivery for Interlock Materials | 15d | 2026-10-05 A | 2026-10-29 | DMM2-Proc-PO-06, DMM2-Proc-Delv-7205 | 50% | 7.5d | 2026-10-05 | 2026-10-21 | 32.82d | 9.82d | Labor [260.95 h]; Operator [260.95 h]; Mobile Crane [120 h] | Proc | Z2 | Roads | Proc |  |
|  | SDS | **Wet Networks & Stations** |  | 2025-12-09 | 2026-10-26 |  |  |  |  |  |  |  |  |  |  |  |  |  |
|  | Storm | **Storm Network** |  | 2025-12-09 | 2026-09-22 |  |  |  |  |  |  |  |  |  |  |  |  |  |
| DMM2-Proc-Delv-7277 |  | Manuf. & Delivery for uPVC Pipes Materials (77.75% Completed) | 225.18d | 2025-12-09 A | 2026-09-15 A | DMM2-Proc-Delv-7213 | 100% |  |  |  |  |  | Labor [351.68 h]; Operator [351.68 h]; Mobile Crane [161.72 h] | Proc | Z2 | Storm | Proc | PR.UNSC |
| DMM2-Proc-Delv-7274 |  | Manuf. & Delivery for Steel Reinforcement Materials (40.00% Completed) | 98d | 2026-05-20 A | 2026-09-15 A | DMM2-Proc-PO-012 | 100% |  |  |  |  |  | Labor [208.76 h]; Operator [208.76 h]; Mobile Crane [96 h] | Proc | Z2 | Storm | Proc | PR.UNSC |
| DMM2-Proc-Delv-7274_R |  | Manuf. & Delivery for Steel Reinforcement Materials(Rem) | 18d | 2026-09-19 A | 2026-09-20 A | DMM2-Proc-PO-012, DMM2-Proc-Delv-7274 | 100% |  | 2026-09-16 | 2026-10-07 |  |  | Labor [313.14 h]; Operator [313.14 h]; Mobile Crane [144 h] | Proc | Z2 | Storm | Proc | PR.UNSC |
| DMM2-Proc-Delv-7277_R |  | Manuf. & Delivery for uPVC Pipes Materials(Rem) | 6d | 2026-09-21 A | 2026-09-22 A | DMM2-Proc-Delv-7213, DMM2-Proc-Delv-7277 | 100% |  | 2026-09-16 | 2026-09-22 |  |  | Labor [100.64 h]; Operator [100.64 h]; Mobile Crane [46.28 h] | Proc | Z2 | Storm | Proc | PR.UNSC |
|  | TSE | **TSE Network** |  | 2026-09-25 | 2026-10-26 |  |  |  |  |  |  |  |  |  |  |  |  |  |
| DMM2-Proc-Delv-7380 |  | Manuf. & Delivery for Dripper Materials | 7d | 2026-09-25 A | 2026-10-26 | DMM2-Proc-Delv-7256 FF | 85% | 1.05d | 2026-10-28 | 2026-11-04 | 108.32d |  | Labor [260.95 h]; Operator [260.95 h]; Mobile Crane [120 h] | Proc | Z2 | TSE | Proc | PR.UNSC |
| DMM2-Proc-Delv-7381 |  | Manuf. & Delivery for Bubbler Materials | 7d | 2026-09-25 A | 2026-10-26 | DMM2-Proc-Delv-7257 FF | 85% | 1.05d | 2026-10-28 | 2026-11-04 | 108.32d |  | Labor [260.95 h]; Operator [260.95 h]; Mobile Crane [120 h] | Proc | Z2 | TSE | Proc | PR.UNSC |
| DMM2-Proc-Delv-7382 |  | Manuf. & Delivery for Pull Box Materials | 10d | 2026-09-25 A | 2026-10-26 | DMM2-Proc-Delv-7258 FF | 85% | 1.5d | 2026-10-25 | 2026-11-04 | 108.32d |  | Labor [260.95 h]; Operator [260.95 h]; Mobile Crane [120 h] | Proc | Z2 | TSE | Proc | PR.UNSC |
| DMM2-Proc-Delv-7383 |  | Manuf. & Delivery for Two Wire Decoder Cable 12 awg Materials | 10d | 2026-09-25 A | 2026-10-26 | DMM2-Proc-Delv-7259 FF | 85% | 1.5d | 2026-10-25 | 2026-11-04 | 108.32d |  | Labor [260.95 h]; Operator [260.95 h]; Mobile Crane [120 h] | Proc | Z2 | TSE | Proc | PR.UNSC |

| ID | WBS | Activity | Duration | Start | Finish | Predecessors | Complete | Remaining | Planned start | Planned finish | Total float | Free float | Resources | DMM2 Weekly Progress | DMM2 Zones | Networks & Stations | DMM2 Phases | JANCO |
| --- | --- | --- | --- | --- | --- | --- | --- | --- | --- | --- | --- | --- | --- | --- | --- | --- | --- | --- |
|  | Pot Pump St. | **Potable Water Pump Station** |  | 2026-08-29 | 2026-10-24 |  |  |  |  |  |  |  |  |  |  |  |  |  |
|  | 1 | **Civil & Architecture** |  | 2026-09-09 | 2026-10-24 |  |  |  |  |  |  |  |  |  |  |  |  |  |
| DMM2-Proc-Delv-7295 |  | Manuf. & Delivery for Steel shutter Door Materials | 15d | 2026-09-09 A | 2026-10-22 | DMM2-Proc-PO-033, DMM2-Proc-PO-178, DMM2-Proc-PO-049 | 90% | 1.5d | 2026-10-24 | 2026-11-09 | 46.82d | 0d | Labor [260.95 h]; Operator [260.95 h]; Mobile Crane [120 h] | Proc | Z2 | Pump | Proc |  |
| DMM2-Proc-Delv-7298 |  | Manuf. & Delivery for Handrail Materials | 15d | 2026-09-13 A | 2026-10-22 | DMM2-Proc-PO-036 | 90% | 1.5d | 2026-10-14 | 2026-10-31 | 46.82d | 12.5d | Labor [260.95 h]; Operator [260.95 h]; Mobile Crane [120 h] | Proc | Z2 | Pump | Proc |  |
| DMM2-Proc-Delv-7292 |  | Manuf. & Delivery for Stairs Materials | 8d | 2026-09-14 A | 2026-10-22 | DMM2-Proc-PO-030, DMM2-Proc-Delv-2648_R, DMM2-Proc-Delv-2528_R | 85% | 1.2d | 2026-10-24 | 2026-11-01 | 37.12d | 0d | Labor [521.91 h]; Operator [521.91 h]; Mobile Crane [240 h] | Proc | Z2 | Pump | Proc |  |
| DMM2-Proc-Delv-7294 |  | Manuf. & Delivery for Stainless Steel Ladder Materials | 15d | 2026-09-14 A | 2026-10-24 | DMM2-Proc-PO-032, DMM2-Proc-Delv-2648_R | 85% | 2.25d | 2026-10-13 | 2026-10-29 | 36.07d | 1.75d | Labor [260.95 h]; Operator [260.95 h]; Mobile Crane [120 h] | Proc | Z2 | Pump | Proc |  |
| DMM2-Proc-Delv-7297 |  | Manuf. & Delivery for Gravel Materials | 2d | 2026-09-15 A | 2026-10-21 | DMM2-Proc-PO-035 | 90% | 0.2d | 2026-10-10 | 2026-10-11 | 54.12d | 7.8d | Labor [104.38 h]; Operator [104.38 h]; Mobile Crane [48 h] | Proc | Z2 | Pump | Proc |  |
| DMM2-Proc-Delv-7293 |  | Manuf. & Delivery for CMU Walls Materials | 3d | 2026-09-19 A | 2026-09-21 A | DMM2-Proc-PO-031 | 100% |  |  |  |  |  | Labor [173.97 h]; Operator [173.97 h]; Mobile Crane [80 h] | Proc | Z2 | Pump | Proc |  |
| DMM2-Proc-Delv-7296 |  | Manuf. & Delivery for Metal Railing Materials | 8d | 2026-09-25 A | 2026-10-22 | DMM2-Proc-PO-034, DMM2-Proc-Delv-7295 FF | 85% | 1.2d | 2026-11-01 | 2026-11-09 | 46.82d | 12.5d | Labor [260.95 h]; Operator [260.95 h]; Mobile Crane [120 h] | Proc | Z2 | Pump | Proc |  |
|  | 3 | **Mechanical** |  | 2026-08-29 | 2026-10-24 |  |  |  |  |  |  |  |  |  |  |  |  |  |
| DMM2-Proc-Delv-7304 |  | Manuf. & Delivery for Sand Trap Louver Materials | 10d | 2026-08-29 A | 2026-10-21 | DMM2-Proc-PO-042 | 90% | 1d | 2026-10-10 | 2026-10-20 | 55.32d | 8.2d | Labor [173.97 h]; Operator [347.94 h]; Mobile Crane [80 h] | Proc | Z2 | Pump | Proc | PWPS |
| DMM2-Proc-Delv-7393 |  | Manuf. & Delivery for Fans Materials | 10d | 2026-09-05 A | 2026-10-21 | DMM2-Proc-PO-188, DMM2-Proc-PO-069 | 90% | 1d | 2026-10-10 | 2026-10-20 | 31.32d | 3d | Labor [347.94 h]; Operator [347.94 h]; Mobile Crane [160 h] | Proc | Z2 | Pump | Proc | PWPS |
| DMM2-Proc-Delv-7312 |  | Manuf. & Delivery for Trench Drain Materials | 6d | 2026-09-07 A | 2026-10-21 | DMM2-Proc-PO-050 | 90% | 0.6d | 2026-10-15 | 2026-10-21 | 50.72d | 12.6d | Labor [208.76 h]; Operator [208.76 h]; Mobile Crane [96 h] | Proc | Z2 | Pump | Proc | PWPS |
| DMM2-Proc-Delv-7311 |  | Manuf. & Delivery for Emergency shower Materials | 10d | 2026-09-08 A | 2026-10-21 | DMM2-Proc-PO-049, DMM2-Proc-PO-178, DMM2-Proc-PO-014 | 90% | 1d | 2026-10-24 | 2026-11-03 | 53.32d | 23.4d | Labor [173.97 h]; Operator [173.97 h]; Mobile Crane [80 h] | Proc | Z2 | Pump | Proc | PWPS |
| DMM2-Proc-Delv-7306 |  | Manuf. & Delivery for Hose Bibb Materials | 10d | 2026-09-10 A | 2026-10-21 | DMM2-Proc-PO-044, DMM2-Proc-PO-056 | 90% | 1d | 2026-10-17 | 2026-10-27 | 51.32d | 21.4d | Labor [173.97 h]; Operator [173.97 h]; Mobile Crane [80 h] | Proc | Z2 | Pump | Proc | PWPS |
| DMM2-Proc-Delv-7309 |  | Manuf. & Delivery for Chlorinators Materials | 8d | 2026-09-10 A | 2026-10-21 | DMM2-Proc-PO-047, DMM2-Proc-Delv-2648_R | 90% | 0.8d | 2026-10-19 | 2026-10-27 | 31.52d | 5.6d | Labor [347.94 h]; Operator [347.94 h]; Mobile Crane [160 h] | Proc | Z2 | Pump | Proc | PWPS |
| DMM2-Proc-Delv-7310 |  | Manuf. & Delivery for Discharge Line Analyzer Materials | 9d | 2026-09-10 A | 2026-10-21 | DMM2-Proc-PO-048, DMM2-Proc-Delv-2648_R | 90% | 0.9d | 2026-10-21 | 2026-10-31 | 31.42d | 5.5d | Labor [347.94 h]; Operator [347.94 h]; Mobile Crane [160 h] | Proc | Z2 | Pump | Proc | PWPS |
| DMM2-Proc-Delv-7394 |  | Manuf. & Delivery for Louvers Materials | 15d | 2026-09-12 A | 2026-10-22 | DMM2-Proc-PO-198, DMM2-Proc-Delv-7393, DMM2-Proc-PO-095 | 88% | 1.8d | 2026-10-21 | 2026-11-07 | 56.52d | 9.4d | Labor [260.95 h]; Operator [260.95 h]; Mobile Crane [120 h] | Proc | Z2 | Pump | Proc | PWPS |
| DMM2-Proc-Delv-7308 |  | Manuf. & Delivery for Chlorine Cylinder Racks Materials | 20d | 2026-09-14 A | 2026-10-24 | DMM2-Proc-PO-046, DMM2-Proc-Delv-2648_R | 85% | 3d | 2026-10-17 | 2026-11-08 | 27.32d | 1.4d | Labor [347.94 h]; Operator [347.94 h]; Mobile Crane [160 h] | Proc | Z2 | Pump | Proc | PWPS |
| DMM2-Proc-Delv-7305 |  | Manuf. & Delivery for FM200 Supression System Materials | 15d | 2026-09-21 A | 2026-10-24 | DMM2-Proc-PO-043, DMM2-Proc-Delv-2648_R, DMM2-Proc-Delv-7304, DMM2-Proc-Delv-3748, DMM2-Proc-Delv-3758_R | 85% | 2.25d | 2026-10-21 | 2026-11-07 | 32.07d | 3.75d | Labor [347.94 h]; Operator [347.94 h]; Mobile Crane [160 h] | Proc | Z2 | Pump | Proc | PWPS |
| DMM2-Proc-Delv-7303 |  | Manuf. & Delivery for Strainers Materials | 10d | 2026-09-25 A | 2026-10-22 | DMM2-Proc-PO-041, DMM2-Proc-Delv-7296 | 85% | 1.5d | 2026-11-10 | 2026-11-21 | 52.82d | 20.9d | Labor [173.97 h]; Operator [173.97 h]; Mobile Crane [80 h] | Proc | Z2 | Pump | Proc | PWPS |
| DMM2-Proc-Delv-7307 |  | Manuf. & Delivery for Exhaust Fans Materials | 10d | 2026-09-25 A | 2026-10-22 | DMM2-Proc-PO-045, DMM2-Proc-Delv-7298 | 85% | 1.5d | 2026-11-01 | 2026-11-11 | 30.82d | 2.5d | Labor [173.97 h]; Operator [173.97 h]; Mobile Crane [80 h] | Proc | Z2 | Pump | Proc | PWPS |
|  | 2 | **Electrical** |  | 2026-09-25 | 2026-10-21 |  |  |  |  |  |  |  |  |  |  |  |  |  |
| DMM2-Proc-Delv-7396 |  | Manuf. & Delivery for Switches and Circuit Breakers Materials | 5d | 2026-09-25 A | 2026-10-21 | DMM2-Proc-PO-051, DMM2-Proc-Delv-7394, DMM2-Proc-PO-095 | 85% | 0.75d | 2026-11-08 | 2026-11-12 | 61.57d | 45.61d | Labor [208.76 h]; Operator [208.76 h]; Mobile Crane [96 h] | Proc | Z2 | Pump | Proc | PWPS |

| ID | WBS | Activity | Duration | Start | Finish | Predecessors | Complete | Remaining | Planned start | Planned finish | Total float | Free float | Resources | DMM2 Weekly Progress | DMM2 Zones | Networks & Stations | DMM2 Phases |
| --- | --- | --- | --- | --- | --- | --- | --- | --- | --- | --- | --- | --- | --- | --- | --- | --- | --- |
|  | SDS1 | **Dry Networks** |  |  |  |  |  |  |  |  |  |  |  |  |  |  |  |
|  | MV | **Medium Voltage Network** |  |  |  |  |  |  |  |  |  |  |  |  |  |  |  |
|  | SL | **Street Lighting** |  |  |  |  |  |  |  |  |  |  |  |  |  |  |  |
|  | Landscape | **Landscape Works** |  | 2026-09-07 | 2026-10-24 |  |  |  |  |  |  |  |  |  |  |  |  |
| DMM2-Proc-Delv-7332 |  | Manuf. & Delivery for Large Shrubs Materials | 3d | 2026-09-07 A | 2026-10-21 | DMM2-Proc-PO-0100, DMM2-Proc-Delv-7246, DMM2-Proc-Delv-7540 | 90% | 0.3d | 2026-10-21 | 2026-10-24 | 52.02d | 32.02d | Labor [208.76 h]; Operator [208.76 h]; Mobile Crane [96 h] | Proc | Z2 | Landscp | Proc |
| DMM2-Proc-Delv-7328 |  | Manuf. & Delivery for Trees Materials | 15d | 2026-09-25 A | 2026-10-24 | DMM2-Proc-PO-096, DMM2-Proc-Delv-7242, DMM2-Proc-Delv-7246 | 85% | 2.25d | 2026-11-11 | 2026-11-28 | 75.07d | 69.07d | Labor [260.95 h]; Operator [260.95 h]; Mobile Crane [120 h] | Proc | Z2 | Landscp | Proc |
| DMM2-Proc-Delv-7329 |  | Manuf. & Delivery for Ornamental Grasses Materials | 3d | 2026-09-25 A | 2026-10-21 | DMM2-Proc-PO-097, DMM2-Proc-Delv-7243 SS | 85% | 0.45d | 2026-12-19 | 2026-12-21 | 74.87d | 71.87d | Labor [173.97 h]; Operator [173.97 h]; Mobile Crane [80 h] | Proc | Z2 | Landscp | Proc |
| DMM2-Proc-Delv-7330 |  | Manuf. & Delivery for Geotextile Layers Materials | 10d | 2026-09-25 A | 2026-10-22 | DMM2-Proc-PO-098, DMM2-Proc-Delv-7244 | 85% | 1.5d | 2026-11-11 | 2026-11-22 | 51.82d | 0d | Labor [173.97 h]; Operator [173.97 h]; Mobile Crane [80 h] | Proc | Z2 | Landscp | Proc |
| DMM2-Proc-Delv-7331 |  | Manuf. & Delivery for Plastic edge Materials | 10d | 2026-09-25 A | 2026-10-22 | DMM2-Proc-PO-099, DMM2-Proc-Delv-7245 | 85% | 1.5d | 2026-12-01 | 2026-12-12 | 60.82d | 46.82d | Labor [173.97 h]; Operator [173.97 h]; Mobile Crane [80 h] | Proc | Z2 | Landscp | Proc |
| DMM2-Proc-Delv-7333 |  | Manuf. & Delivery for Plants Materials | 5d | 2026-09-25 A | 2026-10-21 | DMM2-Proc-PO-0101, DMM2-Proc-Delv-7247, DMM2-Proc-Delv-7331 | 85% | 0.75d | 2026-12-19 | 2026-12-23 | 74.57d | 5.75d | Labor [260.95 h]; Operator [260.95 h]; Mobile Crane [120 h] | Proc | Z2 | Landscp | Proc |
| DMM2-Proc-Delv-7334 |  | Manuf. & Delivery for Gravel/Stone Mulch Materials | 7d | 2026-09-25 A | 2026-10-22 | DMM2-Proc-PO-0102, DMM2-Proc-Delv-7248, DMM2-Proc-Delv-7244 | 85% | 1.05d | 2026-11-11 | 2026-11-18 | 64.27d | 61.27d | Labor [173.97 h]; Operator [173.97 h]; Mobile Crane [80 h] | Proc | Z2 | Landscp | Proc |
| DMM2-Proc-Delv-7335 |  | Manuf. & Delivery for Fences (ZATCA HCIS) Materials | 15d | 2026-09-25 A | 2026-10-24 | DMM2-Proc-PO-0103, DMM2-Proc-Delv-7249 SS | 85% | 2.25d | 2026-12-07 | 2026-12-23 | 75.07d | 69.07d | Labor [330.54 h]; Operator [330.54 h]; Mobile Crane [152 h] | Proc | Z2 | Landscp | Proc |
| DMM2-Proc-Delv-7336 |  | Manuf. & Delivery for Fences (MODON) Materials | 15d | 2026-09-25 A | 2026-10-24 | DMM2-Proc-PO-0104, DMM2-Proc-Delv-7250 SS, DMM2-Proc-Delv-7249 SS | 85% | 2.25d | 2026-12-07 | 2026-12-23 | 75.07d | 33.07d | Labor [347.94 h]; Operator [347.94 h]; Mobile Crane [160 h] | Proc | Z2 | Landscp | Proc |
| DMM2-Proc-Delv-7337 |  | Manuf. & Delivery for Vehicle Steel Gate Materials | 10d | 2026-09-25 A | 2026-10-22 | DMM2-Proc-PO-0105, DMM2-Proc-Delv-7251 | 85% | 1.5d | 2026-11-25 | 2026-12-06 | 64.82d | 51.82d | Labor [347.94 h]; Operator [347.94 h]; Mobile Crane [160 h] | Proc | Z2 | Landscp | Proc |
| DMM2-Proc-Delv-7338 |  | Manuf. & Delivery for Vehicle and Pedestrian Steel Gate Materials | 10d | 2026-09-25 A | 2026-10-22 | DMM2-Proc-PO-0106, DMM2-Proc-Delv-7252 | 85% | 1.5d | 2026-11-14 | 2026-11-24 | 46.82d | 18.82d | Labor [347.94 h]; Operator [347.94 h]; Mobile Crane [160 h] | Proc | Z2 | Landscp | Proc |
|  | Guard Room | **Guard Rooms** |  | 2026-09-03 | 2026-10-22 |  |  |  |  |  |  |  |  |  |  |  |  |
|  | GR MAT Civil | **Civil & Architecture** |  | 2026-09-07 | 2026-10-22 |  |  |  |  |  |  |  |  |  |  |  |  |
| DMM2-Proc-Delv-7346 |  | Manuf. & Delivery for gypsum Board Suspended Ceiling Materials | 3d | 2026-09-07 A | 2026-10-21 | DMM2-Proc-PO-0118, DMM2-Proc-Delv-7341 | 90% | 0.3d | 2026-10-22 | 2026-10-25 | 50.02d | 29.06d | Labor [260.95 h]; Operator [260.95 h]; Mobile Crane [120 h] | Proc | Z2 | GRS | Proc |
| DMM2-Proc-Delv-7344 |  | Manuf. & Delivery for Concrete Masonry Materials | 5d | 2026-09-09 A | 2026-10-21 | DMM2-Proc-Delv-7293 | 90% | 0.5d | 2026-10-07 | 2026-10-12 | 27.82d | 11.86d | Labor [260.95 h]; Operator [260.95 h]; Mobile Crane [120 h] | Proc | Z2 | GRS | Proc |
| DMM2-Proc-Delv-7342 |  | Manuf. & Delivery for Fluid-Applied Water Proofing Paint Materials | 3d | 2026-09-10 A | 2026-10-21 | DMM2-Proc-PO-0114 | 90% | 0.3d | 2026-10-10 | 2026-10-12 | 47.02d | 26.06d | Labor [347.94 h]; Operator [347.94 h]; Mobile Crane [160 h] | Proc | Z2 | GRS | Proc |
| DMM2-Proc-Delv-7339 |  | Manuf. & Delivery for Stone Coping Materials | 3d | 2026-09-12 A | 2026-10-21 | DMM2-Proc-PO-0108, DMM2-Proc-Delv-7341, DMM2-Proc-PO-0110 | 88% | 0.36d | 2026-10-22 | 2026-10-25 | 55.96d | 40d | Labor [260.95 h]; Operator [260.95 h]; Mobile Crane [120 h] | Proc | Z2 | GRS | Proc |
| DMM2-Proc-Delv-7341 |  | Manuf. & Delivery for Board Insulation Materials | 7d | 2026-09-12 A | 2026-10-21 | DMM2-Proc-PO-0113, DMM2-Proc-Delv-7344 | 88% | 0.84d | 2026-10-14 | 2026-10-21 | 52.48d | 36.52d | Labor [260.95 h]; Operator [260.95 h]; Mobile Crane [120 h] | Proc | Z2 | GRS | Proc |
| DMM2-Proc-Delv-7345 |  | Manuf. & Delivery for Porcelain Flooring Tiles Materials | 15d | 2026-09-12 A | 2026-10-22 | DMM2-Proc-PO-0117 | 88% | 1.8d | 2026-10-10 | 2026-10-26 | 34.52d | 18.56d | Labor [260.95 h]; Operator [260.95 h]; Mobile Crane [120 h] | Proc | Z2 | GRS | Proc |
| DMM2-Proc-Delv-7348 |  | Manuf. & Delivery for Raised Floor System Materials | 3d | 2026-09-12 A | 2026-10-21 | DMM2-Proc-PO-0120, DMM2-Proc-Delv-7341, DMM2-Proc-PO-095 | 88% | 0.36d | 2026-10-22 | 2026-10-25 | 48.96d | 23d | Labor [260.95 h]; Operator [260.95 h]; Mobile Crane [120 h] | Proc | Z2 | GRS | Proc |
| DMM2-Proc-Delv-7351 |  | Manuf. & Delivery for Aluminum Windows Materials | 3d | 2026-09-13 A | 2026-10-21 | DMM2-Proc-PO-0123, DMM2-Proc-Delv-7341, DMM2-Proc-PO-095 | 90% | 0.3d | 2026-10-22 | 2026-10-25 | 42.02d | 16.06d | Labor [347.94 h]; Operator [347.94 h]; Mobile Crane [160 h] | Proc | Z2 | GRS | Proc |
| DMM2-Proc-Delv-7343 |  | Manuf. & Delivery for Water proofing Membrane Materials | 5d | 2026-09-19 A | 2026-10-22 | DMM2-Proc-PO-0115 | 67% | 1.65d | 2026-10-07 | 2026-10-12 | 47.67d | 6.35d | Labor [260.95 h]; Operator [260.95 h]; Mobile Crane [120 h] | Proc | Z2 | GRS | Proc |
| DMM2-Proc-Delv-7340 |  | Manuf. & Delivery for Vapor Retarders Materials | 5d | 2026-09-25 A | 2026-10-21 | DMM2-Proc-PO-0112, DMM2-Proc-Delv-7345, DMM2-Proc-Delv-7343, B8.31 23 16.019 | 85% | 0.75d | 2026-10-27 | 2026-11-01 | 112.57d |  | Labor [347.94 h]; Operator [347.94 h]; Mobile Crane [160 h] | Proc | Z2 | GRS | Proc |
| DMM2-Proc-Delv-7347 |  | Manuf. & Delivery for Painting Materials | 2d | 2026-09-25 A | 2026-10-21 | DMM2-Proc-PO-0119 SS, DMM2-Proc-Delv-7346, DMM2-Proc-Delv-7340 SS, B8.31 23 16.019 | 85% | 0.3d | 2026-10-27 | 2026-10-28 | 51.02d | 25.06d | Labor [260.95 h]; Operator [260.95 h]; Mobile Crane [120 h] | Proc | Z2 | GRS | Proc |
| DMM2-Proc-Delv-7349 |  | Manuf. & Delivery for Steel Doors Materials | 5d | 2026-09-25 A | 2026-10-21 | DMM2-Proc-PO-0121, DMM2-Proc-Delv-7345, DMM2-Proc-PO-095 | 85% | 0.75d | 2026-10-27 | 2026-11-01 | 51.57d | 34.61d | Labor [521.91 h]; Operator [521.91 h]; Mobile Crane [240 h] | Proc | Z2 | GRS | Proc |
| DMM2-Proc-Delv-7350 |  | Manuf. & Delivery for Wood Doors Materials | 5d | 2026-09-25 A | 2026-10-21 | DMM2-Proc-PO-0122, DMM2-Proc-Delv-7349, DMM2-Proc-PO-095 | 85% | 0.75d | 2026-11-02 | 2026-11-07 | 53.57d | 36.61d | Labor [347.94 h]; Operator [347.94 h]; Mobile Crane [160 h] | Proc | Z2 | GRS | Proc |

| ID | WBS | Activity | Duration | Start | Finish | Predecessors | Complete | Remaining | Planned start | Planned finish | Total float | Free float | Resources | DMM2 Weekly Progress | DMM2 Zones | Networks & Stations | DMM2 Phases |
| --- | --- | --- | --- | --- | --- | --- | --- | --- | --- | --- | --- | --- | --- | --- | --- | --- | --- |
|  | GR MAT Mech | **Mechanical** |  | 2026-09-08 | 2026-10-21 |  |  |  |  |  |  |  |  |  |  |  |  |
| DMM2-Proc-Delv-7353 |  | Manuf. & Delivery for uPVC Pipes Materials | 2d | 2026-09-08 A | 2026-10-21 | DMM2-Proc-PO-0125 | 90% | 0.2d | 2026-10-07 | 2026-10-08 | 113.12d |  | Labor [260.95 h]; Operator [260.95 h]; Mobile Crane [120 h] | Proc | Z2 | GRS | Proc |
| DMM2-Proc-Delv-7356 |  | Manuf. & Delivery for Scupper Materials | 3d | 2026-09-10 A | 2026-10-21 | DMM2-Proc-PO-0128, B8.31 23 16.0111, DMM2-Proc-PO-095 | 90% | 0.3d | 2026-10-10 | 2026-10-12 | 20.02d | 4.06d | Labor [260.95 h]; Operator [260.95 h]; Mobile Crane [120 h] | Proc | Z2 | GRS | Proc |
| DMM2-Proc-Delv-7362 |  | Manuf. & Delivery for Toilet Materials | 3d | 2026-09-10 A | 2026-10-21 | DMM2-Proc-PO-0134, DMM2-Proc-PO-095 | 90% | 0.3d | 2026-10-21 | 2026-10-24 | 48.02d | 32.06d | Labor [260.95 h]; Operator [260.95 h]; Mobile Crane [120 h] | Proc | Z2 | GRS | Proc |
| DMM2-Proc-Delv-7354 |  | Manuf. & Delivery for PPR Pipes Materials | 3d | 2026-09-12 A | 2026-10-21 | DMM2-Proc-PO-0126 | 88% | 0.36d | 2026-10-10 | 2026-10-12 | 15.96d | 0d | Labor [260.95 h]; Operator [260.95 h]; Mobile Crane [120 h] | Proc | Z2 | GRS | Proc |
| DMM2-Proc-Delv-7357 |  | Manuf. & Delivery for Clean out Materials | 1d | 2026-09-12 A | 2026-10-21 | DMM2-Proc-PO-0129 | 88% | 0.12d | 2026-10-15 | 2026-10-15 | 22.2d | 6.24d | Labor [260.95 h]; Operator [260.95 h]; Mobile Crane [120 h] | Proc | Z2 | GRS | Proc |
| DMM2-Proc-Delv-7358 |  | Manuf. & Delivery for Floor Drain Materials | 2d | 2026-09-12 A | 2026-10-21 | DMM2-Proc-PO-0130, DMM2-Proc-Delv-7354, DMM2-Proc-PO-069, DMM2-Proc-PO-095, DMM2-Proc-PO-014 | 88% | 0.24d | 2026-10-13 | 2026-10-14 | 24.08d | 8.12d | Labor [173.97 h]; Operator [173.97 h]; Mobile Crane [80 h] | Proc | Z2 | GRS | Proc |
| DMM2-Proc-Delv-7361 |  | Manuf. & Delivery for Shower Materials | 2d | 2026-09-12 A | 2026-10-21 | DMM2-Proc-PO-0133, DMM2-Proc-Delv-7363 SS, DMM2-Proc-PO-095 | 88% | 0.24d | 2026-10-25 | 2026-10-26 | 50.08d | 34.12d | Labor [260.95 h]; Operator [260.95 h]; Mobile Crane [120 h] | Proc | Z2 | GRS | Proc |
| DMM2-Proc-Delv-7360 |  | Manuf. & Delivery for Manhole Materials | 3d | 2026-09-24 A | 2026-09-29 A | DMM2-Proc-PO-0132 | 100% |  | 2026-10-07 | 2026-10-10 |  |  | Labor [260.95 h]; Operator [260.95 h]; Mobile Crane [120 h] | Proc | Z2 | GRS | Proc |
| DMM2-Proc-Delv-7352 |  | Manuf. & Delivery for Exhaust Axial Fans Materials | 3d | 2026-09-25 A | 2026-10-21 | DMM2-Proc-PO-0124, DMM2-Proc-Delv-7339, DMM2-Proc-PO-0125 | 85% | 0.45d | 2026-10-26 | 2026-10-28 | 47.87d | 19.91d | Labor [347.94 h]; Operator [347.94 h]; Mobile Crane [160 h] | Proc | Z2 | GRS | Proc |
| DMM2-Proc-Delv-7355 |  | Manuf. & Delivery for DX Wall Mounted Split/AC Materials | 2d | 2026-09-25 A | 2026-10-21 | DMM2-Proc-PO-0127, DMM2-Proc-Delv-7359, DMM2-Proc-PO-094 | 85% | 0.3d | 2026-11-05 | 2026-11-07 | 46.02d | 18.06d | Labor [347.94 h]; Operator [347.94 h]; Mobile Crane [160 h] | Proc | Z2 | GRS | Proc |
| DMM2-Proc-Delv-7359 |  | Manuf. & Delivery for Electrical Water Heater Materials | 5d | 2026-09-25 A | 2026-10-21 | DMM2-Proc-PO-0131, DMM2-Proc-Delv-7364, DMM2-Proc-Delv-7370, DMM2-Proc-Delv-7352 | 85% | 0.75d | 2026-10-31 | 2026-11-04 | 49.57d | 21.61d | Labor [347.94 h]; Operator [347.94 h]; Mobile Crane [160 h] | Proc | Z2 | GRS | Proc |
| DMM2-Proc-Delv-7363 |  | Manuf. & Delivery for Semi Pedestal Sink Materials | 2d | 2026-09-25 A | 2026-10-21 | DMM2-Proc-PO-0135, DMM2-Proc-Delv-7356, DMM2-Proc-Delv-7362, DMM2-Proc-PO-095 | 85% | 0.3d | 2026-10-25 | 2026-10-26 | 52.02d | 36.06d | Labor [260.95 h]; Operator [260.95 h]; Mobile Crane [120 h] | Proc | Z2 | GRS | Proc |
| DMM2-Proc-Delv-7364 |  | Manuf. & Delivery for Fire Extinguishers (CO2 & Powder) Materials | 3d | 2026-09-25 A | 2026-10-21 | DMM2-Proc-PO-0136, DMM2-Proc-Delv-7371 | 85% | 0.45d | 2026-10-27 | 2026-10-29 | 55.87d | 37.91d | Labor [347.94 h]; Operator [347.94 h]; Mobile Crane [160 h] | Proc | Z2 | GRS | Proc |
|  | GR MAT Elec | **Electrical** |  | 2026-09-03 | 2026-10-21 |  |  |  |  |  |  |  |  |  |  |  |  |
| DMM2-Proc-Delv-7375 |  | Manuf. & Delivery for PC Workstation Materials | 2d | 2026-09-03 A | 2026-10-21 | DMM2-Proc-PO-0147, DMM2-Proc-Delv-7369, DMM2-Proc-PO-094 | 90% | 0.2d | 2026-10-21 | 2026-10-22 | 54.12d | 36.16d | Labor [260.95 h]; Operator [260.95 h]; Mobile Crane [120 h] | Proc | Z2 | GRS | Proc |
| DMM2-Proc-Delv-7368 |  | Manuf. & Delivery for Wiring Devices Materials | 4d | 2026-09-09 A | 2026-10-21 | DMM2-Proc-PO-0140, DMM2-Proc-Delv-7344, DMM2-Proc-PO-0141, DMM2-Proc-PO-094 | 90% | 0.4d | 2026-10-17 | 2026-10-20 | 38.92d | 17.96d | Labor [347.94 h]; Operator [347.94 h]; Mobile Crane [160 h] | Proc | Z2 | GRS | Proc |
| DMM2-Proc-Delv-7371 |  | Manuf. & Delivery for Fire Alarm System Materials | 4d | 2026-09-10 A | 2026-10-21 | DMM2-Proc-PO-0143, DMM2-Proc-Delv-7341 | 90% | 0.4d | 2026-10-22 | 2026-10-26 | 55.92d | 27.96d | Labor [347.94 h]; Operator [347.94 h]; Mobile Crane [160 h] | Proc | Z2 | GRS | Proc |
| DMM2-Proc-Delv-7366 |  | Manuf. & Delivery for Low Voltage Cable Materials | 4d | 2026-09-12 A | 2026-10-21 | DMM2-Proc-PO-0138, DMM2-Proc-Delv-7341, DMM2-Proc-PO-0137, DMM2-Proc-PO-071 | 88% | 0.48d | 2026-10-22 | 2026-10-26 | 41.84d | 5.52d | Labor [347.94 h]; Operator [347.94 h]; Mobile Crane [160 h] | Proc | Z2 | GRS | Proc |
| DMM2-Proc-Delv-7367 |  | Manuf. & Delivery for Lighting Materials | 5d | 2026-09-12 A | 2026-10-21 | DMM2-Proc-PO-0139, DMM2-Proc-Delv-7344, DMM2-Proc-PO-094 | 88% | 0.6d | 2026-10-13 | 2026-10-18 | 53.72d | 27.76d | Labor [347.94 h]; Operator [347.94 h]; Mobile Crane [160 h] | Proc | Z2 | GRS | Proc |
| DMM2-Proc-Delv-7369 |  | Manuf. & Delivery for Ground Wires, Rods, Pits, Clamping Materials | 4d | 2026-09-12 A | 2026-10-21 | DMM2-Proc-PO-0141, DMM2-Proc-Delv-7344, DMM2-Eng-PQ-1548, DMM2-Proc-PO-0140 | 88% | 0.48d | 2026-10-17 | 2026-10-20 | 53.84d | 25.88d | Labor [260.95 h]; Operator [260.95 h]; Mobile Crane [120 h] | Proc | Z2 | GRS | Proc |
| DMM2-Proc-Delv-7370 |  | Manuf. & Delivery for Enclosed Switches and Circuit Breakers Materials | 3d | 2026-09-12 A | 2026-10-21 | DMM2-Proc-PO-0142, DMM2-Proc-PO-095 | 88% | 0.36d | 2026-10-10 | 2026-10-12 | 61.96d | 46d | Labor [347.94 h]; Operator [347.94 h]; Mobile Crane [160 h] | Proc | Z2 | GRS | Proc |
| DMM2-Proc-Delv-7365 |  | Manuf. & Delivery for Panelboards Materials | 1d | 2026-09-25 A | 2026-10-21 | DMM2-Proc-PO-0137, DMM2-Proc-Delv-3838, DMM2-Proc-PO-0138 | 85% | 0.15d | 2026-11-16 | 2026-11-16 | 43.17d | 22.21d | Labor [434.92 h]; Operator [434.92 h]; Mobile Crane [200 h] | Proc | Z2 | GRS | Proc |
| DMM2-Proc-Delv-7373 |  | Manuf. & Delivery for Data Cabinet Materials | 5d | 2026-09-25 A | 2026-10-21 | DMM2-Proc-PO-0145, DMM2-Proc-Delv-7374 | 85% | 0.75d | 2026-10-31 | 2026-11-04 | 49.57d | 31.61d | Labor [347.94 h]; Operator [347.94 h]; Mobile Crane [160 h] | Proc | Z2 | GRS | Proc |
| DMM2-Proc-Delv-7374 |  | Manuf. & Delivery for Data/ Voice RJ45 Outlet Materials | 3d | 2026-09-25 A | 2026-10-21 | DMM2-Proc-PO-0146, DMM2-Proc-Delv-7371 | 85% | 0.45d | 2026-10-27 | 2026-10-29 | 57.87d | 41.91d | Labor [347.94 h]; Operator [347.94 h]; Mobile Crane [160 h] | Proc | Z2 | GRS | Proc |
| DMM2-Proc-Delv-7376 |  | Manuf. & Delivery for 50 inch Screen Materials | 3d | 2026-09-25 A | 2026-10-21 | DMM2-Proc-PO-0148, DMM2-Proc-Delv-7339, DMM2-Proc-Delv-7375, DMM2-Proc-PO-095 | 85% | 0.45d | 2026-10-26 | 2026-10-28 | 51.87d | 33.91d | Labor [260.95 h]; Operator [260.95 h]; Mobile Crane [120 h] | Proc | Z2 | GRS | Proc |

| ID | WBS | Activity | Duration | Start | Finish | Predecessors | Complete | Remaining | Planned start | Planned finish | Total float | Free float | Resources | DMM2 Weekly Progress | DMM2 Zones | Networks & Stations | DMM2 Phases | UNASCO |
| --- | --- | --- | --- | --- | --- | --- | --- | --- | --- | --- | --- | --- | --- | --- | --- | --- | --- | --- |
|  | Zone 03 | **Zone 03** |  | 2025-11-03 | 2026-10-27 |  |  |  |  |  |  |  |  |  |  |  |  |  |
|  | Site Grading | **Earth & Road Works** |  | 2025-11-03 | 2026-10-27 |  |  |  |  |  |  |  |  |  |  |  |  |  |
| DMM2-Proc-Delv-7403 |  | Manuf. & Delivery for Embankment & Backfilling Materials | 135.75d | 2025-11-03 A | 2026-04-22 A | DMM2-Proc-PO-01, DMM2-Proc-Delv-7263 | 100% |  |  |  |  |  | Labor [243.56 h]; Operator [243.56 h]; Mobile Crane [112 h] | Proc | Z3 | Roads | Proc |  |
| DMM2-Proc-Delv-7406 |  | Manuf. & Delivery for Subgrade Materials | 101.77d | 2025-12-19 A | 2026-04-29 A | DMM2-Proc-PO-04, DMM2-Proc-Delv-7266 | 100% |  | 2025-12-20 | 2026-04-29 |  |  | Labor [173.97 h]; Operator [173.97 h]; Mobile Crane [80 h] | Proc | Z3 | Roads | Proc |  |
| DMM2-Proc-Delv-7404 |  | Manuf. & Delivery for Agg. Base Coarse (40.00% Completed) | 106.76d | 2026-05-10 A | 2026-09-15 A | DMM2-Proc-PO-02, DMM2-Proc-Delv-7264 SS | 100% |  |  |  |  |  | Labor [69.59 h]; Operator [69.59 h]; Mobile Crane [32 h] | Proc | Z3 | Roads | Proc |  |
| DMM2-Proc-Delv-7405 |  | Manuf. & Delivery for Asphalt Materials (30.00% Completed) | 87.76d | 2026-06-06 A | 2026-09-15 A | DMM2-Proc-PO-03, DMM2-Proc-Delv-7500, DMM2-Proc-Delv-7498 SS | 100% |  |  |  |  |  | Labor [78.29 h]; Operator [78.29 h]; Mobile Crane [36 h] | Proc | Z3 | Roads | Proc |  |
| DMM2-Proc-Delv-7408 |  | Manuf. & Delivery for Interlock Materials | 15d | 2026-09-10 A | 2026-10-22 | DMM2-Proc-PO-06 | 90% | 1.5d | 2026-10-07 | 2026-10-24 | 18.82d | 0d | Labor [260.95 h]; Operator [260.95 h]; Mobile Crane [120 h] | Proc | Z3 | Roads | Proc |  |
| DMM2-Proc-Delv-7407 |  | Manuf. & Delivery for Curbstone Materials | 5d | 2026-09-15 A | 2026-10-21 | DMM2-Proc-PO-05, DMM2-Proc-Delv-7405_R | 90% | 0.5d | 2026-10-13 | 2026-10-19 | 112.82d |  | Labor [139.18 h]; Operator [139.18 h]; Mobile Crane [64 h] | Proc | Z3 | Roads | Proc |  |
| DMM2-Proc-Delv-7404_R |  | Manuf. & Delivery for Agg. Base Coarse(Rem) | 6d | 2026-09-20 A | 2026-10-24 | DMM2-Proc-PO-02, DMM2-Proc-Delv-7264_R SS, DMM2-Proc-Delv-7404 | 50% | 3d | 2026-09-16 | 2026-09-22 | 110.32d |  | Labor [104.38 h]; Operator [104.38 h]; Mobile Crane [48 h] | Proc | Z3 | Roads | Proc |  |
| DMM2-Proc-Delv-7405_R |  | Manuf. & Delivery for Asphalt Materials(Rem) | 10.5d | 2026-09-24 A | 2026-10-27 | DMM2-Proc-PO-03, DMM2-Proc-Delv-7500, DMM2-Proc-Delv-7498_R SS, DMM2-Proc-Delv-7405 | 50% | 5.25d | 2026-09-16 | 2026-09-29 | 108.07d |  | Labor [182.67 h]; Operator [182.67 h]; Mobile Crane [84 h] | Proc | Z3 | Roads | Proc |  |
| DMM2-Proc-Delv-7409 |  | Manuf. & Delivery for Pavement Markings Materials | 4d | 2026-09-25 A | 2026-10-21 | DMM2-Proc-PO-07, DMM2-Proc-Delv-7269 | 85% | 0.6d | 2026-11-08 | 2026-11-12 | 112.72d |  | Labor [173.97 h]; Operator [173.97 h]; Mobile Crane [80 h] | Proc | Z3 | Roads | Proc |  |
| DMM2-Proc-Delv-7410 |  | Manuf. & Delivery for Wheels Stopper (precast concrete) Materials | 2d | 2026-09-25 A | 2026-10-21 | DMM2-Proc-PO-08, DMM2-Proc-Delv-7270 SS | 85% | 0.3d | 2026-11-12 | 2026-11-15 | 113.02d |  | Labor [173.97 h]; Operator [173.97 h]; Mobile Crane [80 h] | Proc | Z3 | Roads | Proc |  |
| DMM2-Proc-Delv-7411 |  | Manuf. & Delivery for Traffic Signs Materials | 3d | 2026-09-25 A | 2026-10-21 | DMM2-Proc-PO-09, DMM2-Proc-Delv-7271, DMM2-Proc-Delv-7501 | 85% | 0.45d | 2026-11-19 | 2026-11-23 | 78.32d | 112.87d | Labor [173.97 h]; Operator [173.97 h]; Mobile Crane [80 h] | Proc | Z3 | Roads | Proc |  |
| DMM2-Proc-Delv-7412 |  | Manuf. & Delivery for ground Mounted Information Signs Materials | 5d | 2026-09-25 A | 2026-10-21 | DMM2-Proc-PO-010 | 85% | 0.75d | 2026-10-28 | 2026-11-02 | 112.57d |  | Labor [347.94 h]; Operator [347.94 h]; Mobile Crane [160 h] | Proc | Z3 | Roads | Proc |  |
|  | SDS | **Wet Networks & Stations** |  | 2026-01-12 | 2026-10-24 |  |  |  |  |  |  |  |  |  |  |  |  |  |
|  | Storm | **Storm Network** |  | 2026-05-18 | 2026-09-27 |  |  |  |  |  |  |  |  |  |  |  |  |  |
| DMM2-Proc-Delv-7417 |  | Manuf. & Delivery for uPVC Pipes Materials (80.00% Completed) | 99.21d | 2026-05-18 A | 2026-09-15 A | DMM2-Proc-Delv-7277 SS | 100% |  |  |  |  |  | Labor [361.86 h]; Operator [361.86 h]; Mobile Crane [166.4 h] | Proc | Z3 | Storm | Proc | PR.UNSC |
| DMM2-Proc-Delv-7414 |  | Manuf. & Delivery for Steel Reinforcement Materials (50.00% Completed) | 92d | 2026-06-01 A | 2026-09-15 A | DMM2-Proc-Delv-7274 SS | 100% |  |  |  |  |  | Labor [121.78 h]; Operator [121.78 h]; Mobile Crane [56 h] | Proc | Z3 | Storm | Proc | PR.UNSC |
| DMM2-Proc-Delv-7417_R |  | Manuf. & Delivery for uPVC Pipes Materials(Rem) | 5.2d | 2026-09-21 A | 2026-09-27 A | DMM2-Proc-Delv-7277_R SS, DMM2-Proc-Delv-7417 | 100% |  | 2026-09-16 | 2026-09-22 |  |  | Labor [90.46 h]; Operator [90.46 h]; Mobile Crane [41.6 h] | Proc | Z3 | Storm | Proc | PR.UNSC |
|  | TSE | **TSE Network** |  | 2026-09-25 | 2026-10-24 |  |  |  |  |  |  |  |  |  |  |  |  |  |
| DMM2-Proc-Delv-7490 |  | Manuf. & Delivery for Dripper Materials | 7d | 2026-09-25 A | 2026-10-22 | DMM2-Proc-Delv-7380, B3.1. 33 14 13-4 | 85% | 1.05d | 2026-11-05 | 2026-11-12 | 54.27d | 0d | Labor [260.95 h]; Operator [260.95 h]; Mobile Crane [120 h] | Proc | Z3 | TSE | Proc | PR.UNSC |
| DMM2-Proc-Delv-7491 |  | Manuf. & Delivery for Bubbler Materials | 15d | 2026-09-25 A | 2026-10-24 | DMM2-Proc-Delv-7381 | 85% | 2.25d | 2026-11-05 | 2026-11-22 | 67.07d | 0d | Labor [260.95 h]; Operator [260.95 h]; Mobile Crane [120 h] | Proc | Z3 | TSE | Proc | PR.UNSC |
| DMM2-Proc-Delv-7492 |  | Manuf. & Delivery for Pull Box Materials | 15d | 2026-09-25 A | 2026-10-24 | DMM2-Proc-Delv-7382 | 85% | 2.25d | 2026-11-05 | 2026-11-22 | 111.07d |  | Labor [260.95 h]; Operator [260.95 h]; Mobile Crane [120 h] | Proc | Z3 | TSE | Proc | PR.UNSC |
| DMM2-Proc-Delv-7493 |  | Manuf. & Delivery for Two Wire Decoder Cable 12 awg Materials | 15d | 2026-09-25 A | 2026-10-24 | DMM2-Proc-Delv-7383 | 85% | 2.25d | 2026-11-05 | 2026-11-22 | 58.07d | 0d | Labor [260.95 h]; Operator [260.95 h]; Mobile Crane [120 h] | Proc | Z3 | TSE | Proc | PR.UNSC |

| ID | WBS | Activity | Duration | Start | Finish | Predecessors | Complete | Remaining | Planned start | Planned finish | Total float | Free float | Resources | DMM2 Weekly Progress | DMM2 Zones | Networks & Stations | DMM2 Phases | JANCO |
| --- | --- | --- | --- | --- | --- | --- | --- | --- | --- | --- | --- | --- | --- | --- | --- | --- | --- | --- |
|  | Sewer Lift St. | **Sewer Lift Station** |  | 2026-01-12 | 2026-10-22 |  |  |  |  |  |  |  |  |  |  |  |  |  |
|  | 1 | **Civil & Architecture** |  | 2026-09-07 | 2026-10-21 |  |  |  |  |  |  |  |  |  |  |  |  |  |
| DMM2-Proc-Delv-7432 |  | Manuf. & Delivery for Metal Ladders Materials | 3d | 2026-09-07 A | 2026-10-21 | DMM2-Proc-PO-052 | 90% | 0.3d | 2026-10-10 | 2026-10-12 | 41.02d | 9.7d | Labor [521.91 h]; Operator [521.91 h]; Mobile Crane [240 h] | Proc | Z3 | Lift | Proc |  |
| DMM2-Proc-Delv-7434 |  | Manuf. & Delivery for Internal painting (Acrylic) Materials | 4d | 2026-09-12 A | 2026-10-21 | DMM2-Proc-PO-054, DMM2-Proc-PO-056 | 88% | 0.48d | 2026-10-12 | 2026-10-15 | 32.84d | 14.52d | Labor [260.95 h]; Operator [260.95 h]; Mobile Crane [120 h] | Proc | Z3 | Lift | Proc |  |
| DMM2-Proc-Delv-7433 |  | Manuf. & Delivery for Metal Covers Materials | 2d | 2026-09-25 A | 2026-10-21 | DMM2-Proc-PO-053, DMM2-Proc-Delv-7435, DMM2-Proc-PO-095 | 85% | 0.3d | 2026-11-03 | 2026-11-04 | 44.02d | 12.7d | Labor [521.91 h]; Operator [521.91 h]; Mobile Crane [240 h] | Proc | Z3 | Lift | Proc |  |
| DMM2-Proc-Delv-7435 |  | Manuf. & Delivery for Signages Materials | 3d | 2026-09-25 A | 2026-10-21 | DMM2-Proc-PO-055, DMM2-Proc-Delv-7434, DMM2-Proc-Delv-4598_R, DMM2-Proc-PO-094 | 85% | 0.45d | 2026-10-31 | 2026-11-02 | 47.87d | 29.55d | Labor [521.91 h]; Operator [521.91 h]; Mobile Crane [240 h] | Proc | Z3 | Lift | Proc |  |
|  | 3 | **Mechanical** |  | 2026-01-12 | 2026-10-22 |  |  |  |  |  |  |  |  |  |  |  |  |  |
| DMM2-Proc-Delv-7439 |  | Manuf. & Delivery for Geotextile Membrane Materials (30.00% Completed) | 197d | 2026-01-12 A | 2026-09-15 A | DMM2-Proc-PO-059 | 100% |  |  |  |  |  | Labor [104.38 h]; Operator [104.38 h]; Mobile Crane [48 h] | Proc | Z3 | Lift | Proc | SLS |
| DMM2-Proc-Delv-7439_R |  | Manuf. & Delivery for Geotextile Membrane Materials(Rem) | 14d | 2026-09-12 A | 2026-10-22 | DMM2-Proc-PO-059, DMM2-Proc-Delv-7439 | 90% | 1.4d | 2026-10-07 | 2026-10-22 | 34.92d | 16.6d | Labor [243.56 h]; Operator [243.56 h]; Mobile Crane [112 h] | Proc | Z3 | Lift | Proc | SLS |
| DMM2-Proc-Delv-7445 |  | Manuf. & Delivery for Penstock Materials | 15d | 2026-09-15 A | 2026-10-22 | DMM2-Proc-PO-065 | 90% | 1.5d | 2026-10-07 | 2026-10-24 | 44.82d | 23.5d | Labor [695.88 h]; Operator [695.88 h]; Mobile Crane [320 h] | Proc | Z3 | Lift | Proc | SLS |
| DMM2-Proc-Delv-7447 |  | Manuf. & Delivery for Scupper Materials | 20d | 2026-09-16 A | 2026-10-22 | DMM2-Proc-PO-067, DMM2-Proc-PO-013 | 90% | 2d | 2026-10-10 | 2026-11-01 | 45.32d | 25d | Labor [347.94 h]; Operator [347.94 h]; Mobile Crane [160 h] | Proc | Z3 | Lift | Proc | SLS |
| DMM2-Proc-Delv-7446 |  | Manuf. & Delivery for Screening Container Materials | 4d | 2026-09-25 A | 2026-10-21 | DMM2-Proc-PO-066, DMM2-Proc-Delv-4458 | 85% | 0.6d | 2026-11-02 | 2026-11-05 | 43.72d | 20.4d | Labor [869.84 h]; Operator [869.84 h]; Mobile Crane [400 h] | Proc | Z3 | Lift | Proc | SLS |
|  | 2 | **Electrical** |  | 2026-09-07 | 2026-10-22 |  |  |  |  |  |  |  |  |  |  |  |  |  |
| DMM2-Proc-Delv-7458 |  | Manuf. & Delivery for Surfaced Mounted Light (LED) Materials | 3d | 2026-09-07 A | 2026-10-21 | DMM2-Proc-PO-078, DMM2-Proc-Delv-7457 SS, DMM2-Proc-PO-080 | 90% | 0.3d | 2026-10-10 | 2026-10-12 | 50.02d | 31.7d | Labor [434.92 h]; Operator [434.92 h]; Mobile Crane [200 h] | Proc | Z3 | Lift | Proc | SLS |
| DMM2-Proc-Delv-7457 |  | Manuf. & Delivery for Galvanized Steel Pole Materials | 3d | 2026-09-12 A | 2026-10-21 | DMM2-Proc-PO-077, DMM2-Proc-Delv-7456 SS | 88% | 0.36d | 2026-10-10 | 2026-10-12 | 50.96d | 32.64d | Labor [521.91 h]; Operator [521.91 h]; Mobile Crane [240 h] | Proc | Z3 | Lift | Proc | SLS |
| DMM2-Proc-Delv-7454 |  | Manuf. & Delivery for Under Ground Fuel Tank Materials | 20d | 2026-09-13 A | 2026-10-22 | DMM2-Proc-PO-074 | 90% | 2d | 2026-10-07 | 2026-10-29 | 43.32d | 7d | Labor [1217.78 h]; Operator [1217.78 h]; Mobile Crane [560 h] | Proc | Z3 | Lift | Proc | SLS |
| DMM2-Proc-Delv-7456 |  | Manuf. & Delivery for Electrical Hand Holes Materials | 3d | 2026-09-15 A | 2026-10-21 | DMM2-Proc-PO-076, DMM2-Proc-Delv-7432 SS | 90% | 0.3d | 2026-10-10 | 2026-10-12 | 41.02d | 3.7d | Labor [434.92 h]; Operator [434.92 h]; Mobile Crane [200 h] | Proc | Z3 | Lift | Proc | SLS |
| DMM2-Proc-Delv-7460 |  | Manuf. & Delivery for Process Control Wiring Materials | 2d | 2026-09-25 A | 2026-10-21 | DMM2-Proc-PO-080, DMM2-Proc-Delv-7461 SS, DMM2-Proc-PO-078 | 85% | 0.3d | 2026-10-25 | 2026-10-26 | 60.02d | 41.7d | Labor [695.88 h]; Operator [695.88 h]; Mobile Crane [320 h] | Proc | Z3 | Lift | Proc | SLS |
| DMM2-Proc-Delv-7461 |  | Manuf. & Delivery for Instrumentation for Process Systems Materials | 9d | 2026-09-25 A | 2026-10-22 | DMM2-Proc-PO-081, DMM2-Proc-Delv-4668_R | 85% | 1.35d | 2026-10-25 | 2026-11-03 | 61.97d | 43.65d | Labor [695.88 h]; Operator [695.88 h]; Mobile Crane [320 h] | Proc | Z3 | Lift | Proc | SLS |
|  | SDS1 | **Dry Networks** |  |  |  |  |  |  |  |  |  |  |  |  |  |  |  |  |
|  | MV | **Medium Voltage Network** |  |  |  |  |  |  |  |  |  |  |  |  |  |  |  |  |
|  | SL | **Street Lighting** |  |  |  |  |  |  |  |  |  |  |  |  |  |  |  |  |
|  | Zone 04 | **Zone 04** |  | 2025-11-07 | 2026-10-24 |  |  |  |  |  |  |  |  |  |  |  |  |  |
|  | Site Grading | **Earth & Road Works** |  | 2025-11-07 | 2026-10-22 |  |  |  |  |  |  |  |  |  |  |  |  |  |
| DMM2-Proc-Delv-7497 |  | Manuf. & Delivery for Embankment & Backfilling Materials | 34.7d | 2025-11-07 A | 2025-12-17 A | DMM2-Proc-PO-01, DMM2-Proc-Delv-7403 | 100% |  | 2025-11-08 | 2025-12-17 |  |  | Labor [243.56 h]; Operator [243.56 h]; Mobile Crane [112 h] | Proc | Z4 | Roads | Proc |  |
| DMM2-Proc-Delv-7500 |  | Manuf. & Delivery for Subgrade Materials | 105.4d | 2025-12-15 A | 2026-04-29 A | DMM2-Proc-PO-04, DMM2-Proc-Delv-7406 | 100% |  |  |  |  |  | Labor [139.18 h]; Operator [139.18 h]; Mobile Crane [64 h] | Proc | Z4 | Roads | Proc |  |
| DMM2-Proc-Delv-7498 |  | Manuf. & Delivery for Agg. Base Coarse (10.00% Completed) | 88.76d | 2026-06-04 A | 2026-09-15 A | DMM2-Proc-PO-02, DMM2-Proc-Delv-7404 SS | 100% |  |  |  |  |  | Labor [13.92 h]; Operator [13.92 h]; Mobile Crane [6.4 h] | Proc | Z4 | Roads | Proc |  |
| DMM2-Proc-Delv-7498_R |  | Manuf. & Delivery for Agg. Base Coarse(Rem) | 7.2d | 2026-09-12 A | 2026-10-21 | DMM2-Proc-PO-02, DMM2-Proc-Delv-7404_R SS, DMM2-Proc-Delv-7498 | 90% | 0.72d | 2026-10-07 | 2026-10-15 | 112.6d |  | Labor [125.26 h]; Operator [125.26 h]; Mobile Crane [57.6 h] | Proc | Z4 | Roads | Proc |  |
| DMM2-Proc-Delv-7499 |  | Manuf. & Delivery for Asphalt Materials | 7d | 2026-09-12 A | 2026-10-21 | DMM2-Proc-PO-03, DMM2-Proc-Delv-7405_R | 88% | 0.84d | 2026-10-13 | 2026-10-21 | 45.48d | 2d | Labor [121.78 h]; Operator [121.78 h]; Mobile Crane [56 h] | Proc | Z4 | Roads | Proc |  |
| DMM2-Proc-Delv-7501 |  | Manuf. & Delivery for Curbstone Materials | 8d | 2026-09-21 A | 2026-10-22 | DMM2-Proc-PO-05, DMM2-Proc-Delv-7407 | 85% | 1.2d | 2026-10-19 | 2026-10-28 | 32.12d | 1.8d | Labor [139.18 h]; Operator [139.18 h]; Mobile Crane [64 h] | Proc | Z4 | Roads | Proc |  |
| DMM2-Proc-Delv-7502 |  | Manuf. & Delivery for Interlock Materials | 8d | 2026-09-25 A | 2026-10-22 | DMM2-Proc-PO-06, DMM2-Proc-Delv-7408, DMM2-Proc-Delv-7499 | 85% | 1.2d | 2026-10-25 | 2026-11-02 | 30.32d | 112.12d | Labor [260.95 h]; Operator [260.95 h]; Mobile Crane [120 h] | Proc | Z4 | Roads | Proc |  |
| DMM2-Proc-Delv-7503 |  | Manuf. & Delivery for Pavement Markings Materials | 2d | 2026-09-25 A | 2026-10-21 | DMM2-Proc-PO-07, DMM2-Proc-Delv-7409 | 85% | 0.3d | 2026-11-12 | 2026-11-15 | 74.02d | 0d | Labor [173.97 h]; Operator [173.97 h]; Mobile Crane [80 h] | Proc | Z4 | Roads | Proc |  |
| DMM2-Proc-Delv-7504 |  | Manuf. & Delivery for Wheels Stopper (precast concrete) Materials | 2d | 2026-09-25 A | 2026-10-21 | DMM2-Proc-PO-08, DMM2-Proc-Delv-7410 SS | 85% | 0.3d | 2026-11-12 | 2026-11-15 | 109.02d | 27.7d | Labor [173.97 h]; Operator [173.97 h]; Mobile Crane [80 h] | Proc | Z4 | Roads | Proc |  |
| DMM2-Proc-Delv-7505 |  | Manuf. & Delivery for Traffic Signs Materials | 3d | 2026-09-25 A | 2026-10-21 | DMM2-Proc-PO-09, DMM2-Proc-Delv-7502 | 85% | 0.45d | 2026-11-03 | 2026-11-05 | 36.87d | 4.55d | Labor [173.97 h]; Operator [173.97 h]; Mobile Crane [80 h] | Proc | Z4 | Roads | Proc |  |
| DMM2-Proc-Delv-7506 |  | Manuf. & Delivery for ground Mounted Information Signs Materials | 5d | 2026-09-25 A | 2026-10-21 | DMM2-Proc-PO-010, DMM2-Proc-Delv-7412 | 85% | 0.75d | 2026-11-03 | 2026-11-08 | 36.57d | 4.25d | Labor [347.94 h]; Operator [347.94 h]; Mobile Crane [160 h] | Proc | Z4 | Roads | Proc |  |

| ID | WBS | Activity | Type | Duration | Start | Finish | Predecessors | Complete | Remaining | Planned start | Planned finish | Total float | Free float | Calendar | Resources | Cost | Actual cost | DMM2 Weekly Progress | DMM2 Zones | Networks & Stations | DMM2 Phases | UNASCO | Weight % | Dmm2 Roads |
| --- | --- | --- | --- | --- | --- | --- | --- | --- | --- | --- | --- | --- | --- | --- | --- | --- | --- | --- | --- | --- | --- | --- | --- | --- |
|  | SDS | **Wet Networks & Stations** |  |  | 2026-04-30 | 2026-10-24 |  |  |  |  |  |  |  |  |  |  |  |  |  |  |  |  |  |  |
|  | Storm | **Storm Network** |  |  | 2026-04-30 | 2026-09-29 |  |  |  |  |  |  |  |  |  |  |  |  |  |  |  |  |  |  |
| DMM2-Proc-Delv-7510 |  | Manuf. & Delivery for uPVC Pipes Materials (60.00% Completed) |  | 114.21d | 2026-04-30 A | 2026-09-15 A | DMM2-Proc-Delv-7417 SS | 100% |  |  |  |  |  |  | Labor [271.39 h]; Operator [271.39 h]; Mobile Crane [124.8 h] |  |  | Proc | Z4 | Storm | Proc | PR.UNSC |  |  |
| DMM2-Proc-Delv-7510_R |  | Manuf. & Delivery for uPVC Pipes Materials(Rem) |  | 10.4d | 2026-09-22 A | 2026-09-29 A | DMM2-Proc-Delv-7417_R SS, DMM2-Proc-Delv-7510 | 100% |  | 2026-09-16 | 2026-09-29 |  |  |  | Labor [180.93 h]; Operator [180.93 h]; Mobile Crane [83.2 h] |  |  | Proc | Z4 | Storm | Proc | PR.UNSC |  |  |
|  | TSE | **TSE Network** |  |  | 2026-09-25 | 2026-10-24 |  |  |  |  |  |  |  |  |  |  |  |  |  |  |  |  |  |  |
| DMM2-Proc-Delv-7554 |  | Manuf. & Delivery for Bubbler Materials |  | 1d | 2026-09-25 A | 2026-10-24 | DMM2-Proc-Delv-7491 FF | 85% | 0.15d | 2026-11-22 | 2026-11-22 | 67.07d | 9d |  | Labor [260.95 h]; Operator [260.95 h]; Mobile Crane [120 h] |  |  | Proc | Z4 | TSE | Proc | PR.UNSC |  |  |
| DMM2-Proc-Delv-7555 |  | Manuf. & Delivery for Pull Box Materials |  | 4d | 2026-09-25 A | 2026-10-21 | DMM2-Proc-Delv-7492 | 85% | 0.6d | 2026-11-23 | 2026-11-26 | 65.72d | 0d |  | Labor [260.95 h]; Operator [260.95 h]; Mobile Crane [120 h] |  |  | Proc | Z4 | TSE | Proc | PR.UNSC |  |  |
| DMM2-Proc-Delv-7556 |  | Manuf. & Delivery for Two Wire Decoder Cable 12 awg Materials |  | 1d | 2026-09-25 A | 2026-10-24 | DMM2-Proc-Delv-7493 FF | 85% | 0.15d | 2026-11-22 | 2026-11-22 | 58.07d | 0d |  | Labor [260.95 h]; Operator [260.95 h]; Mobile Crane [120 h] |  |  | Proc | Z4 | TSE | Proc | PR.UNSC |  |  |
|  | SDS1 | **Dry Networks** |  |  |  |  |  |  |  |  |  |  |  |  |  |  |  |  |  |  |  |  |  |  |
|  | MV | **Medium Voltage Network** |  |  |  |  |  |  |  |  |  |  |  |  |  |  |  |  |  |  |  |  |  |  |
|  | SL | **Street Lighting** |  |  |  |  |  |  |  |  |  |  |  |  |  |  |  |  |  |  |  |  |  |  |
|  | Landscape | **Landscape Works** |  |  | 2026-09-13 | 2026-10-21 |  |  |  |  |  |  |  |  |  |  |  |  |  |  |  |  |  |  |
| DMM2-Proc-Delv-7540 |  | Manuf. & Delivery for Ornamental Grasses Materials |  | 3d | 2026-09-13 A | 2026-10-21 | DMM2-Proc-PO-097 | 90% | 0.3d | 2026-10-07 | 2026-10-10 | 75.02d | 72.02d |  | Labor [173.97 h]; Operator [173.97 h]; Mobile Crane [80 h] |  |  | Proc | Z4 | Landscp | Proc |  |  |  |
| DMM2-Proc-Delv-7543 |  | Manuf. & Delivery for Large Shrubs Materials |  | 3d | 2026-09-13 A | 2026-10-21 | DMM2-Proc-PO-0100 | 90% | 0.3d | 2026-10-07 | 2026-10-10 | 52.02d | 32.02d |  | Labor [208.76 h]; Operator [208.76 h]; Mobile Crane [96 h] |  |  | Proc | Z4 | Landscp | Proc |  |  |  |
| DMM2-Proc-Delv-7539 |  | Manuf. & Delivery for Trees Materials |  | 3d | 2026-09-25 A | 2026-10-21 | DMM2-Proc-PO-096, DMM2-Proc-Delv-7242 | 85% | 0.45d | 2026-11-11 | 2026-11-14 | 69.87d | 66.87d |  | Labor [260.95 h]; Operator [260.95 h]; Mobile Crane [120 h] |  |  | Proc | Z4 | Landscp | Proc |  |  |  |
| DMM2-Proc-Delv-7541 |  | Manuf. & Delivery for Geotextile Layers Materials |  | 6d | 2026-09-25 A | 2026-10-21 | DMM2-Proc-PO-098, DMM2-Proc-Delv-7330 | 85% | 0.9d | 2026-11-23 | 2026-11-29 | 64.42d | 0d |  | Labor [173.97 h]; Operator [173.97 h]; Mobile Crane [80 h] |  |  | Proc | Z4 | Landscp | Proc |  |  |  |
|  | Construction | **Construction** |  |  | 2025-09-06 | 2027-01-23 |  |  |  |  |  |  |  |  |  |  |  |  |  |  |  |  |  |  |
| Mil.Cons.Fin |  | Construction - Finish Milstone | milestone | 0d | 2027-01-07 | 2027-01-07 | Prov.Sum 01 FF |  |  |  |  | 11.68d |  | Corporate - Standard Full Time-26 |  |  |  |  |  |  |  |  |  |  |
|  | Prior | **Zonewise Survey Works** |  |  | 2025-09-06 | 2025-11-01 |  |  |  |  |  |  |  |  |  |  |  |  |  |  |  |  |  |  |
| DMM2-Cons-Surv-Z01 |  | Control Points, Benchmarks & Coordinations - Zone 01 |  | 8d | 2025-09-06 A | 2025-09-14 A | DMM2-Mob-34, DMM2-Mob-09, DMM2-Mob-08, DMM2-Mob-022 | 100% |  |  |  |  |  |  | Labor [85.05 h]; Surveyor [42.52 h]; Surveyor Helper [42.52 h] |  |  | Earth | Z1 |  | Cons |  |  |  |
| DMM2-Cons-Surv-Z02 |  | Control Points, Benchmarks & Coordinations - Zone 02 |  | 6d | 2025-09-22 A | 2025-09-29 A | DMM2-Cons-Surv-Z01 | 100% |  |  |  |  |  |  | Labor [85.05 h]; Surveyor [42.52 h]; Surveyor Helper [42.52 h] |  |  | Earth | Z2 |  | Cons |  |  |  |
| DMM2-Cons-Surv-Z03 |  | Control Points, Benchmarks & Coordinations - Zone 03 |  | 5.62d | 2025-10-12 A | 2025-10-18 A | DMM2-Cons-Surv-Z02 | 100% |  |  |  |  |  |  | Labor [85.05 h]; Surveyor [42.52 h]; Surveyor Helper [42.52 h] |  |  | Earth | Z3 |  | Cons |  |  |  |
| DMM2-Cons-Surv-Z04 |  | Control Points, Benchmarks & Coordinations - Zone 04 |  | 6.88d | 2025-10-25 A | 2025-11-01 A | DMM2-Cons-Surv-Z03 | 100% |  |  |  |  |  |  | Labor [85.05 h]; Surveyor [42.52 h]; Surveyor Helper [42.52 h] |  |  | Earth | Z4 |  | Cons |  |  |  |
|  | Zone 01 | **Zone 01** |  |  | 2025-09-18 | 2026-12-15 |  |  |  |  |  |  |  |  |  |  |  |  |  |  |  |  |  |  |
|  | Dewatering | **Earthworks & Site Grading** |  |  | 2025-09-18 | 2026-11-02 |  |  |  |  |  |  |  |  |  |  |  |  |  |  |  |  |  |  |
| B1.1.31 23 19.01 |  | Dewatering |  | 16d | 2025-09-18 A | 2025-10-07 A | DMM2-Cons-Surv-Z01, DMM2-Mob-01 | 100% |  |  |  |  |  |  | Surface Dewatering [0.16]; Labor [226.8 h]; Foreman [113.4 h]; Surveyor [113.4 h]; Surveyor Helper [113.4 h]; Dewatering pump [128 h] | 463,584 | 463,584 | Earth | Z1 |  | Cons |  | 0.233066685611462 | Z1 |
| B1.1.31 23 16.01 |  | Excavation (all types of soil) (92.00% Completed) |  | 278d | 2025-10-09 A | 2026-09-15 A | B1.1.31 23 19.01 | 100% |  |  |  |  |  |  | Excavation (all types of soil) [58354.1]; Labor [28.69 h]; Foreman [14.34 h]; Operator [28.69 h]; Surveyor [14.34 h]; Surveyor Helper [14.34 h]; Excavator (With Bucket) [14.72 h]; Water Tanker [14.72 h]; Dump Truck [14.72 h]; Plate Compactor [14.72 h] | 870,992.9 | 870,992.9 | Earth | Z1 |  | Cons |  | 0.469417239023889 | Z1 |
| B1.1.31 23 23.01 |  | Engineering Backfiling - Road 01 - Part 01 |  | 42.72d | 2025-10-14 A | 2025-12-02 A | B1.1.31 23 19.01 | 100% |  |  |  |  |  |  | Fill [38974.9]; Labor [283.5 h]; Foreman [141.75 h]; Operator [283.5 h]; Surveyor [141.75 h]; Surveyor Helper [141.75 h]; Loader [160 h]; Water Tanker [160 h]; Dump Truck [160 h]; Plate Compactor [160 h]; Roller Compactor [160 h] | 1,095,037.87 | 1,095,037.87 | Earth | Z1 |  | Cons |  | 1.08369827749084 | RD 01 |
| B1.1.31 23 23.22 |  | Engineering Backfiling - Service Road (12.00% Completed) |  | 267d | 2025-10-22 A | 2026-09-15 A | B1.1.31 23 23.01, B1.1.31 23 23.32 | 100% |  |  |  |  |  |  | Fill [5586.73]; Labor [37.42 h]; Foreman [18.71 h]; Operator [37.42 h]; Surveyor [18.71 h]; Surveyor Helper [18.71 h]; Loader [19.2 h]; Water Tanker [19.2 h]; Dump Truck [19.2 h]; Plate Compactor [19.2 h]; Roller Compactor [19.2 h] | 156,964.73 | 156,964.73 | Earth | Z1 |  | Cons |  | 1.29449428423438 | Serv. Rd |
| B1.1.31 23 23.32 |  | Engineering Backfiling - Road 01 - Part 02 |  | 35.43d | 2025-10-25 A | 2025-12-04 A | B1.1.31 23 23.01 | 100% |  |  |  |  |  |  | Fill [38974.9]; Labor [255.15 h]; Foreman [127.57 h]; Operator [255.15 h]; Surveyor [127.57 h]; Surveyor Helper [127.57 h]; Loader [144 h]; Water Tanker [144 h]; Dump Truck [144 h]; Plate Compactor [144 h]; Roller Compactor [144 h] | 1,095,037.87 | 1,095,037.87 | Earth | Z1 |  | Cons |  | 1.08369827749084 | RD 01 |
| B1.1.31 23 23.22_R |  | Engineering Backfiling - Service Road(Rem) |  | 12d | 2026-09-19 A | 2026-11-02 | B1.1.31 23 23.01, B1.1.31 23 23.32, B1.1.31 23 23.22 | 15% | 10.2d | 2026-09-16 | 2026-09-30 | 103.12d |  |  | Fill [40969.3]; Labor [274.43 h]; Foreman [137.21 h]; Operator [274.43 h]; Surveyor [137.21 h]; Surveyor Helper [137.21 h]; Loader [140.8 h]; Water Tanker [140.8 h]; Dump Truck [140.8 h]; Plate Compactor [140.8 h]; Roller Compactor [140.8 h] | 1,151,074.7 | 172,661.2 | Earth | Z1 |  | Cons |  | 1.29449428423438 | Serv. Rd |
| B1.1.31 23 16.01_R |  | Excavation (all types of soil)(Rem) |  | 3.99d | 2026-10-21 | 2026-10-25 | B1.1.31 23 19.01, B1.1.31 23 16.01 |  |  |  |  | 76.33d | 2.24d |  | Excavation (all types of soil) [5074.27]; Labor [2.49 h]; Foreman [1.25 h]; Operator [2.49 h]; Surveyor [1.25 h]; Surveyor Helper [1.25 h]; Excavator (With Bucket) [1.28 h]; Water Tanker [1.28 h]; Dump Truck [1.28 h]; Plate Compactor [1.28 h] | 75,738.51 |  | Earth | Z1 |  | Cons |  | 0.469417239023889 | Z1 |

| ID | WBS | Activity | Duration | Start | Finish | Predecessors | Complete | Planned start | Planned finish | Resources | Cost | Actual cost | Weight % | DMM2 Weekly Progress | DMM2 Zones | Networks & Stations | DMM2 Phases | UNASCO | Networks Components | Subcontractors works | Dmm2 Roads | Yellow Sheet |
| --- | --- | --- | --- | --- | --- | --- | --- | --- | --- | --- | --- | --- | --- | --- | --- | --- | --- | --- | --- | --- | --- | --- |
|  | RD 01 | **Road 01** |  | 2025-11-11 | 2026-12-15 |  |  |  |  |  |  |  |  |  |  |  |  |  |  |  |  |  |
|  | Wet Networks | **Wet Networks** |  | 2025-11-11 | 2026-12-10 |  |  |  |  |  |  |  |  |  |  |  |  |  |  |  |  |  |
|  | Sewerage Network | **Sewerage Network** |  | 2025-11-11 | 2026-10-12 |  |  |  |  |  |  |  |  |  |  |  |  |  |  |  |  |  |
|  | GRP | **GRP Pipes** |  | 2025-11-11 | 2026-03-15 |  |  |  |  |  |  |  |  |  |  |  |  |  |  |  |  |  |
|  | 200 | **?200** |  | 2025-11-11 | 2026-03-15 |  |  |  |  |  |  |  |  |  |  |  |  |  |  |  |  |  |
|  | 3 | **Depth From 1.5m to 2.5m** |  | 2025-11-11 | 2026-03-11 |  |  |  |  |  |  |  |  |  |  |  |  |  |  |  |  |  |
| B5.33 31 00.02.021 |  | Excavation | 43.19d | 2025-11-11 A | 2025-12-31 A | B1.1.31 23 23.32 | 100% |  |  | Labor [42.52 h]; Foreman [21.26 h]; Operator [42.52 h]; Surveyor [21.26 h]; Surveyor Helper [21.26 h]; Excavator (With Bucket) [24 h]; Water Tanker [24 h]; Dump Truck [24 h]; Plate Compactor [24 h]; Sew Dia. 200mm Depth: 1.51m - 2.5m [90.91] | 30,729.97 | 30,729.97 | 0.00549155681141213 | Cons. | Z1 | Sew | Cons | CS.UNSC | GRPs | SUB.C | RD 01 | Sew |
| B5.33 31 00.02.022 |  | Sand Bedding | 21.99d | 2025-12-06 A | 2025-12-31 A | B5.33 31 00.02.021 | 100% |  |  | Labor [42.52 h]; Foreman [21.26 h]; Operator [85.05 h]; Surveyor [21.26 h]; Surveyor Helper [21.26 h]; Loader [24 h]; Water Tanker [24 h]; Dump Truck [24 h]; Plate Compactor [24 h]; Sew Dia. 200mm Depth: 1.51m - 2.5m [22.73] | 7,683.84 | 7,683.84 | 0.00137313027207214 | Cons. | Z1 | Sew | Cons | CS.UNSC | GRPs | SUB.C | RD 01 | Sew |
| B5.33 31 00.02.023 |  | Pipe Laying | 31.08d | 2025-12-09 A | 2026-01-14 A | B5.33 31 00.02.022 | 100% |  |  | Labor [42.52 h]; Foreman [21.26 h]; Plumber Helper [21.26 h]; Plumber [21.26 h]; Operator [21.26 h]; Surveyor [21.26 h]; Surveyor Helper [21.26 h]; Mobile Crane [24 h]; Sew Dia. 200mm Depth: 1.51m - 2.5m [204.55] | 69,143.79 | 69,143.79 | 0.0123562438948964 | Cons. | Z1 | Sew | Cons | CS.UNSC | GRPs | SUB.C | RD 01 | Sew |
| B5.33 31 00.02.024 |  | Embedment & Test | 69.66d | 2025-12-14 A | 2026-03-11 A | B5.33 31 00.02.023 | 100% |  |  | Labor [56.7 h]; Foreman [28.35 h]; Plumber Helper [28.35 h]; Plumber [28.35 h]; Operator [56.7 h]; Surveyor [28.35 h]; Surveyor Helper [28.35 h]; Loader [32 h]; Water Tanker [32 h]; Dump Truck [32 h]; Plate Compactor [32 h]; Roller Compactor [32 h]; Sew Dia. 200mm Depth: 1.51m - 2.5m [90.91] | 30,729.97 | 30,729.97 | 0.00549155681141213 | Cons. | Z1 | Sew | Cons | CS.UNSC | GRPs | SUB.C | RD 01 | Sew |
| B5.33 31 00.02.025 |  | Backfilling & Warrning Tape | 54.66d | 2025-12-25 A | 2026-03-04 A | B5.33 31 00.02.024 | 100% |  |  | Labor [70.87 h]; Foreman [35.44 h]; Operator [141.75 h]; Surveyor [35.44 h]; Surveyor Helper [35.44 h]; Loader [40 h]; Water Tanker [40 h]; Dump Truck [40 h]; Plate Compactor [40 h]; Roller Compactor [40 h]; Sew Dia. 200mm Depth: 1.51m - 2.5m [45.46] | 15,367.68 | 15,367.68 | 0.0027462605441443 | Cons. | Z1 | Sew | Cons | CS.UNSC | GRPs | SUB.C | RD 01 | Sew |
|  | 2 | **Depth From 2.5m to 3.5m** |  | 2026-01-04 | 2026-03-14 |  |  |  |  |  |  |  |  |  |  |  |  |  |  |  |  |  |
| B5.33 31 00.02.031 |  | Excavation | 6.85d | 2026-01-04 A | 2026-01-11 A | B5.33 31 00.02.021 | 100% |  |  | Labor [42.52 h]; Foreman [21.26 h]; Operator [42.52 h]; Surveyor [21.26 h]; Surveyor Helper [21.26 h]; Excavator (With Bucket) [24 h]; Water Tanker [24 h]; Dump Truck [24 h]; Plate Compactor [24 h]; Sew Dia. 200mm Depth: 2.51m - 3.5m [62.03] | 24,727.59 | 24,727.59 | 0.00646094324563673 | Cons. | Z1 | Sew | Cons | CS.UNSC | GRPs | SUB.C | RD 01 | Sew |
| B5.33 31 00.02.032 |  | Sand Bedding | 5.85d | 2026-01-06 A | 2026-01-12 A | B5.33 31 00.02.031 | 100% |  |  | Labor [42.52 h]; Foreman [21.26 h]; Operator [85.05 h]; Surveyor [21.26 h]; Surveyor Helper [21.26 h]; Loader [24 h]; Water Tanker [24 h]; Dump Truck [24 h]; Plate Compactor [24 h]; Sew Dia. 200mm Depth: 2.51m - 3.5m [15.5] | 6,179.72 | 6,179.72 | 0.001614667266597 | Cons. | Z1 | Sew | Cons | CS.UNSC | GRPs | SUB.C | RD 01 | Sew |
| B5.33 31 00.02.033 |  | Pipe Laying | 29.17d | 2026-01-08 A | 2026-02-11 A | B5.33 31 00.02.032 | 100% |  |  | Labor [28.35 h]; Foreman [14.17 h]; Plumber Helper [14.17 h]; Plumber [14.17 h]; Operator [14.17 h]; Surveyor [14.17 h]; Surveyor Helper [14.17 h]; Mobile Crane [16 h]; Sew Dia. 200mm Depth: 2.51m - 3.5m [139.57] | 55,634.89 | 55,634.89 | 0.0145365537578704 | Cons. | Z1 | Sew | Cons | CS.UNSC | GRPs | SUB.C | RD 01 | Sew |
| B5.33 31 00.02.034 |  | Embedment & Test | 48.29d | 2026-01-10 A | 2026-03-14 A | B5.33 31 00.02.033 | 100% |  |  | Labor [56.7 h]; Foreman [28.35 h]; Plumber Helper [28.35 h]; Plumber [28.35 h]; Operator [56.7 h]; Surveyor [28.35 h]; Surveyor Helper [28.35 h]; Loader [32 h]; Water Tanker [32 h]; Dump Truck [32 h]; Plate Compactor [32 h]; Roller Compactor [32 h]; Sew Dia. 200mm Depth: 2.51m - 3.5m [62.03] | 24,727.59 | 24,727.59 | 0.00646094324563673 | Cons. | Z1 | Sew | Cons | CS.UNSC | GRPs | SUB.C | RD 01 | Sew |
| B5.33 31 00.02.035 |  | Backfilling & Warrning Tape | 44.8d | 2026-01-12 A | 2026-03-11 A | B5.33 31 00.02.034 | 100% |  |  | Labor [70.87 h]; Foreman [35.44 h]; Operator [141.75 h]; Surveyor [35.44 h]; Surveyor Helper [35.44 h]; Loader [40 h]; Water Tanker [40 h]; Dump Truck [40 h]; Plate Compactor [40 h]; Roller Compactor [40 h]; Sew Dia. 200mm Depth: 2.51m - 3.5m [31.02] | 12,363.79 | 12,363.79 | 0.00323047162281836 | Cons. | Z1 | Sew | Cons | CS.UNSC | GRPs | SUB.C | RD 01 | Sew |
|  | 1 | **Depth From 3.5m to 4.5m** |  | 2026-01-05 | 2026-03-15 |  |  |  |  |  |  |  |  |  |  |  |  |  |  |  |  |  |
| B5.33 31 00.02.041 |  | Excavation | 6.97d | 2026-01-05 A | 2026-01-12 A | B5.33 31 00.02.031 | 100% |  |  | Labor [42.52 h]; Foreman [21.26 h]; Operator [42.52 h]; Surveyor [21.26 h]; Surveyor Helper [21.26 h]; Excavator (With Bucket) [24 h]; Water Tanker [24 h]; Dump Truck [24 h]; Plate Compactor [24 h]; Sew Dia. 200mm Depth: 3.51m - 4.5m [83.61] | 38,392.5 | 38,392.5 | 0.00797337574002583 | Cons. | Z1 | Sew | Cons | CS.UNSC | GRPs | SUB.C | RD 01 | Sew |
| B5.33 31 00.02.042 |  | Sand Bedding | 5.31d | 2026-01-07 A | 2026-01-13 A | B5.33 31 00.02.041 | 100% |  |  | Labor [28.35 h]; Foreman [14.17 h]; Operator [56.7 h]; Surveyor [14.17 h]; Surveyor Helper [14.17 h]; Loader [16 h]; Water Tanker [16 h]; Dump Truck [16 h]; Plate Compactor [16 h]; Sew Dia. 200mm Depth: 3.51m - 4.5m [20.91] | 9,599.7 | 9,599.7 | 0.00199367141059952 | Cons. | Z1 | Sew | Cons | CS.UNSC | GRPs | SUB.C | RD 01 | Sew |
| B5.33 31 00.02.043 |  | Pipe Laying | 6.31d | 2026-01-08 A | 2026-01-15 A | B5.33 31 00.02.042 | 100% |  |  | Labor [28.35 h]; Foreman [14.17 h]; Plumber Helper [14.17 h]; Plumber [14.17 h]; Operator [14.17 h]; Surveyor [14.17 h]; Surveyor Helper [14.17 h]; Mobile Crane [16 h]; Sew Dia. 200mm Depth: 3.51m - 4.5m [188.12] | 86,384.7 | 86,384.7 | 0.0179404228906512 | Cons. | Z1 | Sew | Cons | CS.UNSC | GRPs | SUB.C | RD 01 | Sew |
| B5.33 31 00.02.044 |  | Embedment & Test | 49.04d | 2026-01-10 A | 2026-03-15 A | B5.33 31 00.02.043 | 100% |  |  | Labor [56.7 h]; Foreman [28.35 h]; Plumber Helper [28.35 h]; Plumber [28.35 h]; Operator [56.7 h]; Surveyor [28.35 h]; Surveyor Helper [28.35 h]; Loader [32 h]; Water Tanker [32 h]; Dump Truck [32 h]; Plate Compactor [32 h]; Roller Compactor [32 h]; Sew Dia. 200mm Depth: 3.51m - 4.5m [83.61] | 38,392.5 | 38,392.5 | 0.00797337574002583 | Cons. | Z1 | Sew | Cons | CS.UNSC | GRPs | SUB.C | RD 01 | Sew |
| B5.33 31 00.02.045 |  | Backfilling & Warrning Tape | 41.67d | 2026-01-17 A | 2026-03-14 A | B5.33 31 00.02.044, B5.33 31 00.02.034 | 100% |  |  | Labor [70.87 h]; Foreman [35.44 h]; Operator [141.75 h]; Surveyor [35.44 h]; Surveyor Helper [35.44 h]; Loader [40 h]; Water Tanker [40 h]; Dump Truck [40 h]; Plate Compactor [40 h]; Roller Compactor [40 h]; Sew Dia. 200mm Depth: 3.51m - 4.5m [41.8] | 19,193.1 | 19,193.1 | 0.00398603291882676 | Cons. | Z1 | Sew | Cons | CS.UNSC | GRPs | SUB.C | RD 01 | Sew |
|  | 150 | **?150** |  | 2025-12-18 | 2026-01-04 |  |  |  |  |  |  |  |  |  |  |  |  |  |  |  |  |  |
|  | 1 | **Depth From 1.5m to 2.5m** |  | 2025-12-18 | 2026-01-04 |  |  |  |  |  |  |  |  |  |  |  |  |  |  |  |  |  |
| B5.33 31 00.01.021 |  | Excavation | 1d | 2025-12-18 A | 2025-12-20 A | B5.33 31 00.02.041 | 100% |  |  | Labor [42.52 h]; Foreman [21.26 h]; Operator [42.52 h]; Surveyor [21.26 h]; Surveyor Helper [21.26 h]; Excavator (With Bucket) [24 h]; Water Tanker [24 h]; Dump Truck [24 h]; Plate Compactor [24 h]; Sew Dia. 150mm Depth: 1.51m - 2.5m [15.67] | 4,500.25 | 4,500.25 | 0.00104261322598816 | Cons. | Z1 | Sew | Cons | CS.UNSC | GRPs | SUB.C | RD 01 | Sew |
| B5.33 31 00.01.022 |  | Sand Bedding | 2.02d | 2025-12-20 A | 2025-12-22 A | B5.33 31 00.01.021 | 100% |  |  | Labor [28.35 h]; Foreman [14.17 h]; Operator [56.7 h]; Surveyor [14.17 h]; Surveyor Helper [14.17 h]; Loader [16 h]; Water Tanker [16 h]; Dump Truck [16 h]; Plate Compactor [16 h]; Sew Dia. 150mm Depth: 1.51m - 2.5m [3.92] | 1,124.18 | 1,124.18 | 0.000260448551346613 | Cons. | Z1 | Sew | Cons | CS.UNSC | GRPs | SUB.C | RD 01 | Sew |
| B5.33 31 00.01.023 |  | Pipe Laying | 0.91d | 2025-12-23 A | 2025-12-24 A | B5.33 31 00.01.022 | 100% | 2025-12-23 | 2025-12-23 | Labor [28.35 h]; Foreman [14.17 h]; Plumber Helper [14.17 h]; Plumber [14.17 h]; Operator [14.17 h]; Surveyor [14.17 h]; Surveyor Helper [14.17 h]; Mobile Crane [16 h]; Sew Dia. 150mm Depth: 1.51m - 2.5m [35.26] | 10,124.68 | 10,124.68 | 0.00234567500332294 | Cons. | Z1 | Sew | Cons | CS.UNSC | GRPs | SUB.C | RD 01 | Sew |
| B5.33 31 00.01.024 |  | Embedment & Test | 1.35d | 2025-12-25 A | 2025-12-27 A | B5.33 31 00.01.023 | 100% |  |  | Labor [56.7 h]; Foreman [28.35 h]; Plumber Helper [28.35 h]; Plumber [28.35 h]; Operator [56.7 h]; Surveyor [28.35 h]; Surveyor Helper [28.35 h]; Loader [32 h]; Water Tanker [32 h]; Dump Truck [32 h]; Plate Compactor [32 h]; Roller Compactor [32 h]; Sew Dia. 150mm Depth: 1.51m - 2.5m [15.67] | 4,500.25 | 4,500.25 | 0.00104261322598816 | Cons. | Z1 | Sew | Cons | CS.UNSC | GRPs | SUB.C | RD 01 | Sew |
| B5.33 31 00.01.025 |  | Backfilling & Warrning Tape | 5.06d | 2025-12-29 A | 2026-01-04 A | B5.33 31 00.01.024, B5.33 31 00.02.025, B5.33 31 00.02.035 | 100% |  |  | Labor [70.87 h]; Foreman [35.44 h]; Operator [141.75 h]; Surveyor [35.44 h]; Surveyor Helper [35.44 h]; Loader [40 h]; Water Tanker [40 h]; Dump Truck [40 h]; Plate Compactor [40 h]; Roller Compactor [40 h]; Sew Dia. 150mm Depth: 1.51m - 2.5m [7.84] | 2,251.89 | 2,251.89 | 0.000521716123294941 | Cons. | Z1 | Sew | Cons | CS.UNSC | GRPs | SUB.C | RD 01 | Sew |

| ID | WBS | Activity | Duration | Start | Finish | Predecessors | Complete | Planned start | Planned finish | Resources | Cost | Actual cost | Weight % | DMM2 Weekly Progress | DMM2 Zones | Networks & Stations | DMM2 Phases | UNASCO | Networks Components | Subcontractors works | Dmm2 Roads | Yellow Sheet |
| --- | --- | --- | --- | --- | --- | --- | --- | --- | --- | --- | --- | --- | --- | --- | --- | --- | --- | --- | --- | --- | --- | --- |
|  | Manholes | **Manholes ?1200** |  | 2025-11-12 | 2026-10-12 |  |  |  |  |  |  |  |  |  |  |  |  |  |  |  |  |  |
|  | 2 | **Depth From 0.0m to 1.5m** |  | 2025-11-12 | 2026-10-10 |  |  |  |  |  |  |  |  |  |  |  |  |  |  |  |  |  |
| B5.33 05 13.011 |  | Excavation & Compaction | 48.2d | 2025-11-12 A | 2026-01-07 A | B5.33 31 00.01.021 | 100% |  |  | Labor [28.35 h]; Foreman [14.17 h]; Operator [28.35 h]; Surveyor [14.17 h]; Surveyor Helper [14.17 h]; Excavator (With Bucket) [16 h]; Water Tanker [16 h]; Dump Truck [16 h]; Plate Compactor [16 h]; MH depth 0 - 1.5m [0.42] | 3,756.4 | 3,756.4 | 0.00071742015752524 | Cons. | Z1 | Sew | Cons | CS.UNSC | Manhole | SUB.C | RD 01 | Sew |
| B5.33 05 13.012 |  | Blinding Conc, & RC Base | 1.5d | 2026-02-25 A | 2026-02-26 A | B5.33 05 13.011 | 100% |  |  | Labor [42.52 h]; Foreman [21.26 h]; Laboratory Officer [21.26 h]; Carpenter [21.26 h]; Steelfixer [21.26 h]; Mason [21.26 h]; MH depth 0 - 1.5m [0.27] | 2,414.83 | 2,414.83 | 0.0004611986726948 | Cons. | Z1 | Sew | Cons | CS.UNSC | Manhole | SUB.C | RD 01 | Sew |
| B5.33 05 13.013 |  | Manhole Installation | 4d | 2026-03-18 A | 2026-03-28 A | B5.33 05 13.012 | 100% |  |  | Labor [28.35 h]; Operator [28.35 h]; Surveyor [14.17 h]; Surveyor Helper [14.17 h]; Boom Truck [16 h]; Mobile Crane [16 h]; MH depth 0 - 1.5m [1.36] | 12,215.44 | 12,215.44 | 0.00212664377410211 | Cons. | Z1 | Sew | Cons | CS.UNSC | Manhole | SUB.C | RD 01 | Sew |
| B5.33 05 13.014 |  | Test, Internal Finishing, Benching & Cover (43.20% Completed) | 90d | 2026-06-03 A | 2026-09-15 A | B5.33 05 13.013 | 100% |  |  | Labor [26.94 h]; Foreman [13.47 h]; Plumber Helper [13.47 h]; Plumber [13.47 h]; Mason [13.47 h]; MH depth 0 - 1.5m [0.12] | 1,043.21 | 1,043.21 | 0.0004611986726948 | Cons. | Z1 | Sew | Cons | CS.UNSC | Manhole | SUB.C | RD 01 | Sew |
| B5.33 05 13.015 |  | Backfilling | 5d | 2026-06-11 A | 2026-06-17 A | B5.33 05 13.013 | 100% |  |  | Labor [70.87 h]; Foreman [35.44 h]; Operator [70.87 h]; Surveyor [35.44 h]; Surveyor Helper [35.44 h]; Loader [40 h]; Water Tanker [40 h]; Dump Truck [40 h]; Plate Compactor [40 h]; MH depth 0 - 1.5m [0.55] | 4,963.82 | 4,963.82 | 0.000948019493872638 | Cons. | Z1 | Sew | Cons | CS.UNSC | Manhole | SUB.C | RD 01 | Sew |
| B5.33 05 13.014_R |  | Test, Internal Finishing, Benching & Cover(Rem) | 3.04d | 2026-10-07 A | 2026-10-10 A | B5.33 05 13.013, B5.33 05 13.014 | 100% | 2026-10-07 | 2026-10-11 | Labor [35.43 h]; Foreman [17.71 h]; Plumber Helper [17.71 h]; Plumber [17.71 h]; Mason [17.71 h]; MH depth 0 - 1.5m [0.15] | 1,371.62 | 1,371.62 | 0.0004611986726948 | Cons. | Z1 | Sew | Cons | CS.UNSC | Manhole | SUB.C | RD 01 | Sew |
|  | 3 | **Depth From 1.5m to 2.5m** |  | 2025-12-18 | 2026-10-12 |  |  |  |  |  |  |  |  |  |  |  |  |  |  |  |  |  |
| B5.33 05 13.021 |  | Excavation & Compaction | 23.2d | 2025-12-18 A | 2026-01-14 A | B5.33 05 13.011 | 100% |  |  | Labor [28.35 h]; Foreman [14.17 h]; Operator [28.35 h]; Surveyor [14.17 h]; Surveyor Helper [14.17 h]; Excavator (With Bucket) [16 h]; Water Tanker [16 h]; Dump Truck [16 h]; Plate Compactor [16 h]; MH depth 1.51 - 2.5m [0.67] | 8,553.04 | 8,553.04 | 0.00163451626522375 | Cons. | Z1 | Sew | Cons | CS.UNSC | Manhole | SUB.C | RD 01 | Sew |
| B5.33 05 13.022 |  | Blinding Conc, & RC Base | 2.25d | 2026-02-25 A | 2026-02-28 A | B5.33 05 13.021 | 100% |  |  | Labor [42.52 h]; Foreman [21.26 h]; Laboratory Officer [21.26 h]; Carpenter [21.26 h]; Steelfixer [21.26 h]; Mason [21.26 h]; MH depth 1.51 - 2.5m [0.45] | 5,701.91 | 5,701.91 | 0.00108965546636573 | Cons. | Z1 | Sew | Cons | CS.UNSC | Manhole | SUB.C | RD 01 | Sew |
| B5.33 05 13.023 |  | Manhole Installation | 2d | 2026-04-01 A | 2026-04-02 A | B5.33 05 13.022 | 100% |  |  | Labor [28.35 h]; Operator [28.35 h]; Surveyor [14.17 h]; Surveyor Helper [14.17 h]; Boom Truck [16 h]; Mobile Crane [16 h]; MH depth 1.51 - 2.5m [1.99] | 25,278.55 | 25,278.55 | 0.00483081828096108 | Cons. | Z1 | Sew | Cons | CS.UNSC | Manhole | SUB.C | RD 01 | Sew |
| B5.33 05 13.024 |  | Test, Internal Finishing, Benching & Cover (43.20% Completed) | 90d | 2026-06-03 A | 2026-09-15 A | B5.33 05 13.023 | 100% |  |  | Labor [26.94 h]; Foreman [13.47 h]; Plumber Helper [13.47 h]; Plumber [13.47 h]; Mason [13.47 h]; MH depth 1.51 - 2.5m [0.22] | 2,750.28 | 2,750.28 | 0.00108965546636573 | Cons. | Z1 | Sew | Cons | CS.UNSC | Manhole | SUB.C | RD 01 | Sew |
| B5.33 05 13.025 |  | Backfilling | 5d | 2026-06-11 A | 2026-06-17 A | B5.33 05 13.024 SS | 100% |  |  | Labor [70.87 h]; Foreman [35.44 h]; Operator [70.87 h]; Surveyor [35.44 h]; Surveyor Helper [35.44 h]; Loader [40 h]; Water Tanker [40 h]; Dump Truck [40 h]; Plate Compactor [40 h]; MH depth 1.51 - 2.5m [0.88] | 11,213.79 | 11,213.79 | 0.0021429945757647 | Cons. | Z1 | Sew | Cons | CS.UNSC | Manhole | SUB.C | RD 01 | Sew |
| B5.33 05 13.024_R |  | Test, Internal Finishing, Benching & Cover(Rem) | 3.04d | 2026-10-11 A | 2026-10-12 A | B5.33 05 13.023, B5.33 05 13.024, B5.33 05 13.014_R | 100% | 2026-10-11 | 2026-10-14 | Labor [35.43 h]; Foreman [17.71 h]; Plumber Helper [17.71 h]; Plumber [17.71 h]; Mason [17.71 h]; MH depth 1.51 - 2.5m [0.28] | 3,616.1 | 3,616.1 | 0.00108965546636573 | Cons. | Z1 | Sew | Cons | CS.UNSC | Manhole | SUB.C | RD 01 | Sew |
|  | 4 | **Depth From 2.5m to 3.5m** |  | 2025-12-21 | 2026-10-12 |  |  |  |  |  |  |  |  |  |  |  |  |  |  |  |  |  |
| B5.33 05 13.031 |  | Excavation & Compaction | 24.2d | 2025-12-21 A | 2026-01-18 A | B5.33 05 13.021 | 100% |  |  | Labor [28.35 h]; Foreman [14.17 h]; Operator [28.35 h]; Surveyor [14.17 h]; Surveyor Helper [14.17 h]; Excavator (With Bucket) [16 h]; Water Tanker [16 h]; Dump Truck [16 h]; Plate Compactor [16 h]; MH depth 2.51 - 3.5m [0.82] | 12,557.47 | 12,557.47 | 0.00239967188397841 | Cons. | Z1 | Sew | Cons | CS.UNSC | Manhole | SUB.C | RD 01 | Sew |
| B5.33 05 13.032 |  | Blinding Conc, & RC Base | 2.25d | 2026-02-28 A | 2026-03-02 A | B5.33 05 13.031 | 100% |  |  | Labor [42.52 h]; Foreman [21.26 h]; Laboratory Officer [21.26 h]; Carpenter [21.26 h]; Steelfixer [21.26 h]; Mason [21.26 h]; MH depth 2.51 - 3.5m [0.55] | 8,447.73 | 8,447.73 | 0.00161432058487404 | Cons. | Z1 | Sew | Cons | CS.UNSC | Manhole | SUB.C | RD 01 | Sew |
| B5.33 05 13.033 |  | Manhole Installation | 2d | 2026-04-08 A | 2026-04-09 A | B5.33 05 13.032 | 100% |  |  | Labor [28.35 h]; Operator [28.35 h]; Surveyor [14.17 h]; Surveyor Helper [14.17 h]; Boom Truck [16 h]; Mobile Crane [16 h]; MH depth 2.51 - 3.5m [2.48] | 37,900.73 | 37,900.73 | 0.00724264604982577 | Cons. | Z1 | Sew | Cons | CS.UNSC | Manhole | SUB.C | RD 01 | Sew |
| B5.33 05 13.034 |  | Test, Internal Finishing, Benching & Cover (43.20% Completed) | 90d | 2026-06-03 A | 2026-09-15 A | B5.33 05 13.033 | 100% |  |  | Labor [26.94 h]; Foreman [13.47 h]; Plumber Helper [13.47 h]; Plumber [13.47 h]; Mason [13.47 h]; MH depth 2.51 - 3.5m [0.24] | 3,649.42 | 3,649.42 | 0.00161432058487404 | Cons. | Z1 | Sew | Cons | CS.UNSC | Manhole | SUB.C | RD 01 | Sew |
| B5.33 05 13.035 |  | Backfilling | 5d | 2026-06-11 A | 2026-06-17 A | B5.33 05 13.025, B5.33 31 00.02.035 | 100% |  |  | Labor [70.87 h]; Foreman [35.44 h]; Operator [70.87 h]; Surveyor [35.44 h]; Surveyor Helper [35.44 h]; Loader [40 h]; Water Tanker [40 h]; Dump Truck [40 h]; Plate Compactor [40 h]; MH depth 2.51 - 3.5m [1.1] | 16,895.51 | 16,895.51 | 0.00322864944389824 | Cons. | Z1 | Sew | Cons | CS.UNSC | Manhole | SUB.C | RD 01 | Sew |
| B5.33 05 13.034_R |  | Test, Internal Finishing, Benching & Cover(Rem) | 3.04d | 2026-10-07 A | 2026-10-10 A | B5.33 05 13.033, B5.33 05 13.034, B5.33 05 13.024_R | 100% | 2026-10-14 | 2026-10-18 | Labor [35.43 h]; Foreman [17.71 h]; Plumber Helper [17.71 h]; Plumber [17.71 h]; Mason [17.71 h]; MH depth 2.51 - 3.5m [0.31] | 4,798.31 | 4,798.31 | 0.00161432058487404 | Cons. | Z1 | Sew | Cons | CS.UNSC | Manhole | SUB.C | RD 01 | Sew |
|  | 4 | **Depth From 2.5m to 3.5m Backdrop** |  | 2026-01-07 | 2026-10-12 |  |  |  |  |  |  |  |  |  |  |  |  |  |  |  |  |  |
| B5.33 05 13.041 |  | Excavation & Compaction | 1d | 2026-01-07 A | 2026-01-08 A | B5.33 05 13.031 | 100% |  |  | Labor [28.35 h]; Foreman [14.17 h]; Operator [28.35 h]; Surveyor [14.17 h]; Surveyor Helper [14.17 h]; Excavator (With Bucket) [16 h]; Water Tanker [16 h]; Dump Truck [16 h]; Plate Compactor [16 h]; MH depth 2.51- 3.5 m with back drop [0.15] | 2,642.62 | 2,642.62 | 0.000501272357160162 | Cons. | Z1 | Sew | Cons | CS.UNSC | Manhole | SUB.C | RD 01 | Sew |
| B5.33 05 13.042 |  | Blinding Conc, & RC Base | 3d | 2026-04-15 A | 2026-04-18 A | B5.33 05 13.041 | 100% |  |  | Labor [42.52 h]; Foreman [21.26 h]; Laboratory Officer [21.26 h]; Carpenter [21.26 h]; Steelfixer [21.26 h]; Mason [21.26 h]; MH depth 2.51- 3.5 m with back drop [0.11] | 1,849.84 | 1,849.84 | 0.000350890650012114 | Cons. | Z1 | Sew | Cons | CS.UNSC | Manhole | SUB.C | RD 01 | Sew |
| B5.33 05 13.043 |  | Manhole Installation | 55.5d | 2026-04-18 A | 2026-06-25 A | B5.33 05 13.042 | 100% |  |  | Labor [28.35 h]; Operator [28.35 h]; Surveyor [14.17 h]; Surveyor Helper [14.17 h]; Boom Truck [16 h]; Mobile Crane [16 h]; MH depth 2.51- 3.5 m with back drop [0.45] | 7,927.87 | 7,927.87 | 0.00150381707148049 | Cons. | Z1 | Sew | Cons | CS.UNSC | Manhole | SUB.C | RD 01 | Sew |
| B5.33 05 13.044 |  | Test, Internal Finishing, Benching & Cover (43.20% Completed) | 89.2d | 2026-06-03 A | 2026-09-15 A | B5.33 05 13.043 | 100% |  |  | Labor [26.94 h]; Foreman [13.47 h]; Plumber Helper [13.47 h]; Plumber [13.47 h]; Mason [13.47 h]; MH depth 2.51- 3.5 m with back drop [0.05] | 799.13 | 799.13 | 0.000350890650012114 | Cons. | Z1 | Sew | Cons | CS.UNSC | Manhole | SUB.C | RD 01 | Sew |
| B5.33 05 13.045 |  | Backfilling | 5d | 2026-06-11 A | 2026-06-17 A | B5.33 31 00.02.045, B5.33 05 13.035 | 100% |  |  | Labor [70.87 h]; Foreman [35.44 h]; Operator [70.87 h]; Surveyor [35.44 h]; Surveyor Helper [35.44 h]; Loader [40 h]; Water Tanker [40 h]; Dump Truck [40 h]; Plate Compactor [40 h]; MH depth 2.51- 3.5 m with back drop [0.2] | 3,435.41 | 3,435.41 | 0.000651654064308214 | Cons. | Z1 | Sew | Cons | CS.UNSC | Manhole | SUB.C | RD 01 | Sew |
| B5.33 05 13.044_R |  | Test, Internal Finishing, Benching & Cover(Rem) | 3.04d | 2026-10-11 A | 2026-10-12 A | B5.33 05 13.043, B5.33 05 13.044, B5.33 05 13.034_R | 100% | 2026-10-18 | 2026-10-21 | Labor [35.43 h]; Foreman [17.71 h]; Plumber Helper [17.71 h]; Plumber [17.71 h]; Mason [17.71 h]; MH depth 2.51- 3.5 m with back drop [0.06] | 1,050.71 | 1,050.71 | 0.000350890650012114 | Cons. | Z1 | Sew | Cons | CS.UNSC | Manhole | SUB.C | RD 01 | Sew |

| ID | WBS | Activity | Duration | Start | Finish | Predecessors | Complete | Planned start | Planned finish | Resources | Cost | Actual cost | Weight % | DMM2 Weekly Progress | DMM2 Zones | Networks & Stations | DMM2 Phases | UNASCO | Networks Components | Subcontractors works | Dmm2 Roads | Yellow Sheet |
| --- | --- | --- | --- | --- | --- | --- | --- | --- | --- | --- | --- | --- | --- | --- | --- | --- | --- | --- | --- | --- | --- | --- |
|  | 1 | **Depth From 3.5m to 4.5m** |  | 2026-01-03 | 2026-10-11 |  |  |  |  |  |  |  |  |  |  |  |  |  |  |  |  |  |
| B5.33 05 13.051 |  | Excavation & Compaction | 1d | 2026-01-03 A | 2026-01-04 A | B5.33 05 13.041 | 100% |  |  | Labor [28.35 h]; Foreman [14.17 h]; Operator [28.35 h]; Surveyor [14.17 h]; Surveyor Helper [14.17 h]; Excavator (With Bucket) [16 h]; Water Tanker [16 h]; Dump Truck [16 h]; Plate Compactor [16 h]; MH depth 3.51 -4.5m [1.55] | 31,151.59 | 31,151.59 | 0.00594936291235462 | Cons. | Z1 | Sew | Cons | CS.UNSC | Manhole | SUB.C | RD 01 | Sew |
| B5.33 05 13.052 |  | Blinding Conc, & RC Base | 1.5d | 2026-03-04 A | 2026-03-05 A | B5.33 05 13.051 | 100% |  |  | Labor [42.52 h]; Foreman [21.26 h]; Laboratory Officer [21.26 h]; Carpenter [21.26 h]; Steelfixer [21.26 h]; Mason [21.26 h]; MH depth 3.51 -4.5m [1.03] | 20,667.88 | 20,667.88 | 0.00394717347069681 | Cons. | Z1 | Sew | Cons | CS.UNSC | Manhole | SUB.C | RD 01 | Sew |
| B5.33 05 13.053 |  | Manhole Installation | 5d | 2026-04-22 A | 2026-04-27 A | B5.33 05 13.052 | 100% |  |  | Labor [28.35 h]; Operator [28.35 h]; Surveyor [14.17 h]; Surveyor Helper [14.17 h]; Boom Truck [16 h]; Mobile Crane [16 h]; MH depth 3.51 -4.5m [4.66] | 93,454.77 | 93,454.77 | 0.0178480887370639 | Cons. | Z1 | Sew | Cons | CS.UNSC | Manhole | SUB.C | RD 01 | Sew |
| B5.33 05 13.054 |  | Test, Internal Finishing, Benching & Cover (43.20% Completed) | 90d | 2026-06-03 A | 2026-09-15 A | B5.33 05 13.053 | 100% |  |  | Labor [26.94 h]; Foreman [13.47 h]; Plumber Helper [13.47 h]; Plumber [13.47 h]; Mason [13.47 h]; MH depth 3.51 -4.5m [0.44] | 8,776.36 | 8,776.36 | 0.00394717347069681 | Cons. | Z1 | Sew | Cons | CS.UNSC | Manhole | SUB.C | RD 01 | Sew |
| B5.33 05 13.055 |  | Backfilling | 5d | 2026-06-11 A | 2026-06-17 A | B5.33 05 13.045 | 100% |  |  | Labor [70.87 h]; Foreman [35.44 h]; Operator [70.87 h]; Surveyor [35.44 h]; Surveyor Helper [35.44 h]; Loader [40 h]; Water Tanker [40 h]; Dump Truck [40 h]; Plate Compactor [40 h]; MH depth 3.51 -4.5m [2.06] | 41,335.76 | 41,335.76 | 0.00789434694139357 | Cons. | Z1 | Sew | Cons | CS.UNSC | Manhole | SUB.C | RD 01 | Sew |
| B5.33 05 13.054_R |  | Test, Internal Finishing, Benching & Cover(Rem) | 3.04d | 2026-10-07 A | 2026-10-11 A | B5.33 05 13.053, B5.33 05 13.054, B5.33 05 13.064_R | 100% | 2026-10-25 | 2026-10-28 | Labor [35.43 h]; Foreman [17.71 h]; Plumber Helper [17.71 h]; Plumber [17.71 h]; Mason [17.71 h]; MH depth 3.51 -4.5m [0.58] | 11,539.29 | 11,539.29 | 0.00394717347069681 | Cons. | Z1 | Sew | Cons | CS.UNSC | Manhole | SUB.C | RD 01 | Sew |
|  | 1 | **Depth From 3.5m to 4.5m Backdrop** |  | 2026-01-05 | 2026-10-08 |  |  |  |  |  |  |  |  |  |  |  |  |  |  |  |  |  |
| B5.33 05 13.061 |  | Excavation & Compaction | 1d | 2026-01-05 A | 2026-01-06 A | B5.33 05 13.051 | 100% |  |  | Labor [28.35 h]; Foreman [14.17 h]; Operator [28.35 h]; Surveyor [14.17 h]; Surveyor Helper [14.17 h]; Excavator (With Bucket) [16 h]; Water Tanker [16 h]; Dump Truck [16 h]; Plate Compactor [16 h]; MH depth 3.51- 4.5 m with back drop [0.3] | 6,020.46 | 6,020.46 | 0.0011441053203377 | Cons. | Z1 | Sew | Cons | CS.UNSC | Manhole | SUB.C | RD 01 | Sew |
| B5.33 05 13.062 |  | Blinding Conc, & RC Base | 20.25d | 2026-04-29 A | 2026-05-23 A | B5.33 05 13.061 | 100% |  |  | Labor [42.52 h]; Foreman [21.26 h]; Laboratory Officer [21.26 h]; Carpenter [21.26 h]; Steelfixer [21.26 h]; Mason [21.26 h]; MH depth 3.51- 4.5 m with back drop [0.2] | 3,913.3 | 3,913.3 | 0.000743668458219507 | Cons. | Z1 | Sew | Cons | CS.UNSC | Manhole | SUB.C | RD 01 | Sew |
| B5.33 05 13.063 |  | Manhole Installation | 20.5d | 2026-04-30 A | 2026-05-24 A | B5.33 05 13.062 | 100% |  |  | Labor [28.35 h]; Operator [28.35 h]; Surveyor [14.17 h]; Surveyor Helper [14.17 h]; Boom Truck [16 h]; Mobile Crane [16 h]; MH depth 3.51- 4.5 m with back drop [0.9] | 18,061.42 | 18,061.42 | 0.00343232475712767 | Cons. | Z1 | Sew | Cons | CS.UNSC | Manhole | SUB.C | RD 01 | Sew |
| B5.33 05 13.064 |  | Test, Internal Finishing, Benching & Cover (43.20% Completed) | 90d | 2026-06-03 A | 2026-09-15 A | B5.33 05 13.063 | 100% |  |  | Labor [26.94 h]; Foreman [13.47 h]; Plumber Helper [13.47 h]; Plumber [13.47 h]; Mason [13.47 h]; MH depth 3.51- 4.5 m with back drop [0.08] | 1,690.55 | 1,690.55 | 0.000743668458219507 | Cons. | Z1 | Sew | Cons | CS.UNSC | Manhole | SUB.C | RD 01 | Sew |
| B5.33 05 13.065 |  | Backfilling | 5d | 2026-06-11 A | 2026-06-17 A | B5.33 05 13.055 | 100% |  |  | Labor [70.87 h]; Foreman [35.44 h]; Operator [70.87 h]; Surveyor [35.44 h]; Surveyor Helper [35.44 h]; Loader [40 h]; Water Tanker [40 h]; Dump Truck [40 h]; Plate Compactor [40 h]; MH depth 3.51- 4.5 m with back drop [0.41] | 8,127.62 | 8,127.62 | 0.00154454218245589 | Cons. | Z1 | Sew | Cons | CS.UNSC | Manhole | SUB.C | RD 01 | Sew |
| B5.33 05 13.064_R |  | Test, Internal Finishing, Benching & Cover(Rem) | 3.04d | 2026-10-07 A | 2026-10-08 A | B5.33 05 13.063, B5.33 05 13.064, B5.33 05 13.044_R | 100% | 2026-10-21 | 2026-10-25 | Labor [35.43 h]; Foreman [17.71 h]; Plumber Helper [17.71 h]; Plumber [17.71 h]; Mason [17.71 h]; MH depth 3.51- 4.5 m with back drop [0.11] | 2,222.75 | 2,222.75 | 0.000743668458219507 | Cons. | Z1 | Sew | Cons | CS.UNSC | Manhole | SUB.C | RD 01 | Sew |
|  | Storm | **Storm Network** |  | 2025-12-15 | 2026-10-05 |  |  |  |  |  |  |  |  |  |  |  |  |  |  |  |  |  |
|  | GRP | **GRP** |  | 2025-12-15 | 2026-03-30 |  |  |  |  |  |  |  |  |  |  |  |  |  |  |  |  |  |
|  | ?400 | **?400** |  | 2025-12-15 | 2026-03-12 |  |  |  |  |  |  |  |  |  |  |  |  |  |  |  |  |  |
|  | 3 | **Depth From 1.5m to 2.5m** |  | 2025-12-15 | 2026-03-12 |  |  |  |  |  |  |  |  |  |  |  |  |  |  |  |  |  |
| B6.33 42 11.021 |  | Excavation | 3.09d | 2025-12-15 A | 2025-12-18 A | B5.33 05 13.015 | 100% |  |  | Labor [28.35 h]; Foreman [14.17 h]; Operator [28.35 h]; Surveyor [14.17 h]; Surveyor Helper [14.17 h]; Excavator (With Bucket) [16 h]; Water Tanker [16 h]; Dump Truck [16 h]; Plate Compactor [16 h]; Depth: 1.51m - 2.5m [3.99] | 1,531.45 | 1,531.45 | 0.00310601117599926 | Cons. | Z1 | Storm | Cons | CS.UNSC | GRPs | SUB.C | RD 01 | Strm |
| B6.33 42 11.022 |  | Sand Bedding | 2d | 2025-12-18 A | 2025-12-21 A | B6.33 42 11.021 | 100% |  |  | Labor [28.35 h]; Foreman [14.17 h]; Operator [56.7 h]; Surveyor [14.17 h]; Surveyor Helper [14.17 h]; Loader [16 h]; Water Tanker [16 h]; Dump Truck [16 h]; Plate Compactor [16 h]; Depth: 1.51m - 2.5m [1] | 383 | 383 | 0.000776776306783888 | Cons. | Z1 | Storm | Cons | CS.UNSC | GRPs | SUB.C | RD 01 | Strm |
| B6.33 42 11.023 |  | Pipe Laying | 21.29d | 2025-12-21 A | 2026-01-14 A | B6.33 42 11.022 | 100% |  |  | Labor [28.35 h]; Foreman [14.17 h]; Plumber Helper [14.17 h]; Plumber [14.17 h]; Operator [14.17 h]; Surveyor [14.17 h]; Surveyor Helper [14.17 h]; Mobile Crane [16 h]; Depth: 1.51m - 2.5m [8.98] | 3,445.9 | 3,445.9 | 0.00698879865878235 | Cons. | Z1 | Storm | Cons | CS.UNSC | GRPs | SUB.C | RD 01 | Strm |
| B6.33 42 11.024 |  | Embedment & Test | 21d | 2025-12-22 A | 2026-01-15 A | B6.33 42 11.023 | 100% |  |  | Labor [56.7 h]; Foreman [28.35 h]; Plumber Helper [28.35 h]; Plumber [28.35 h]; Operator [56.7 h]; Surveyor [28.35 h]; Surveyor Helper [28.35 h]; Loader [32 h]; Water Tanker [32 h]; Dump Truck [32 h]; Plate Compactor [32 h]; Roller Compactor [32 h]; Depth: 1.51m - 2.5m [3.99] | 1,531.45 | 1,531.45 | 0.00310601117599926 | Cons. | Z1 | Storm | Cons | CS.UNSC | GRPs | SUB.C | RD 01 | Strm |
| B6.33 42 11.025 |  | Backfilling & Warrning Tape | 61.33d | 2025-12-24 A | 2026-03-12 A | B6.33 42 11.024 | 100% |  |  | Labor [70.87 h]; Foreman [35.44 h]; Operator [141.75 h]; Surveyor [35.44 h]; Surveyor Helper [35.44 h]; Loader [40 h]; Water Tanker [40 h]; Dump Truck [40 h]; Plate Compactor [40 h]; Roller Compactor [40 h]; Depth: 1.51m - 2.5m [2] | 766 | 766 | 0.00155355261356778 | Cons. | Z1 | Storm | Cons | CS.UNSC | GRPs | SUB.C | RD 01 | Strm |
|  | ?4001 | **?500** |  | 2025-12-18 | 2026-03-22 |  |  |  |  |  |  |  |  |  |  |  |  |  |  |  |  |  |
|  | 3 | **Depth From 1.5m to 2.5m** |  | 2025-12-18 | 2026-03-18 |  |  |  |  |  |  |  |  |  |  |  |  |  |  |  |  |  |
| B6.33 42 11.041 |  | Excavation | 22.85d | 2025-12-18 A | 2026-01-14 A | B6.33 42 11.021 | 100% |  |  | Labor [28.35 h]; Foreman [14.17 h]; Operator [28.35 h]; Surveyor [14.17 h]; Surveyor Helper [14.17 h]; Excavator (With Bucket) [16 h]; Water Tanker [16 h]; Dump Truck [16 h]; Plate Compactor [16 h]; 1.51m - 2.5m [12.84] | 7,427.81 | 7,427.81 | 0.00678741471010152 | Cons. | Z1 | Storm | Cons | CS.UNSC | GRPs | SUB.C | RD 01 | Strm |
| B6.33 42 11.042 |  | Sand Bedding | 23.25d | 2025-12-21 A | 2026-01-17 A | B6.33 42 11.041 | 100% |  |  | Labor [28.35 h]; Foreman [14.17 h]; Operator [56.7 h]; Surveyor [14.17 h]; Surveyor Helper [14.17 h]; Loader [16 h]; Water Tanker [16 h]; Dump Truck [16 h]; Plate Compactor [16 h]; 1.51m - 2.5m [3.21] | 1,856.05 | 1,856.05 | 0.00169602876081295 | Cons. | Z1 | Storm | Cons | CS.UNSC | GRPs | SUB.C | RD 01 | Strm |
| B6.33 42 11.043 |  | Pipe Laying | 22d | 2025-12-24 A | 2026-01-19 A | B6.33 42 11.042 | 100% |  |  | Labor [28.35 h]; Foreman [14.17 h]; Plumber Helper [14.17 h]; Plumber [14.17 h]; Operator [14.17 h]; Surveyor [14.17 h]; Surveyor Helper [14.17 h]; Mobile Crane [16 h]; 1.51m - 2.5m [28.88] | 16,711.67 | 16,711.67 | 0.0152708581810161 | Cons. | Z1 | Storm | Cons | CS.UNSC | GRPs | SUB.C | RD 01 | Strm |
| B6.33 42 11.044 |  | Embedment & Test | 58.12d | 2025-12-27 A | 2026-03-11 A | B6.33 42 11.043 | 100% |  |  | Labor [56.7 h]; Foreman [28.35 h]; Plumber Helper [28.35 h]; Plumber [28.35 h]; Operator [56.7 h]; Surveyor [28.35 h]; Surveyor Helper [28.35 h]; Loader [32 h]; Water Tanker [32 h]; Dump Truck [32 h]; Plate Compactor [32 h]; Roller Compactor [32 h]; 1.51m - 2.5m [12.84] | 7,427.81 | 7,427.81 | 0.00678741471010152 | Cons. | Z1 | Storm | Cons | CS.UNSC | GRPs | SUB.C | RD 01 | Strm |
| B6.33 42 11.045 |  | Backfilling & Warrning Tape | 60.63d | 2025-12-29 A | 2026-03-18 A | B6.33 42 11.044 | 100% |  |  | Labor [70.87 h]; Foreman [35.44 h]; Operator [141.75 h]; Surveyor [35.44 h]; Surveyor Helper [35.44 h]; Loader [40 h]; Water Tanker [40 h]; Dump Truck [40 h]; Plate Compactor [40 h]; Roller Compactor [40 h]; 1.51m - 2.5m [6.42] | 3,713.91 | 3,713.91 | 0.00339370735505079 | Cons. | Z1 | Storm | Cons | CS.UNSC | GRPs | SUB.C | RD 01 | Strm |

| ID | WBS | Activity | Duration | Start | Finish | Predecessors | Complete | Planned start | Planned finish | Resources | Cost | Actual cost | Weight % | DMM2 Weekly Progress | DMM2 Zones | Networks & Stations | DMM2 Phases | UNASCO | Networks Components | Subcontractors works | Dmm2 Roads | Yellow Sheet |
| --- | --- | --- | --- | --- | --- | --- | --- | --- | --- | --- | --- | --- | --- | --- | --- | --- | --- | --- | --- | --- | --- | --- |
|  | 4 | **Depth From 2.5m to 3.5m** |  | 2026-01-03 | 2026-03-22 |  |  |  |  |  |  |  |  |  |  |  |  |  |  |  |  |  |
| B6.33 42 11.051 |  | Excavation | 10.19d | 2026-01-03 A | 2026-01-14 A | B6.33 42 11.041 | 100% |  |  | Labor [28.35 h]; Foreman [14.17 h]; Operator [28.35 h]; Surveyor [14.17 h]; Surveyor Helper [14.17 h]; Excavator (With Bucket) [16 h]; Water Tanker [16 h]; Dump Truck [16 h]; Plate Compactor [16 h]; 2.51m - 3.5m [12.94] | 9,329.77 | 9,329.77 | 0.00213713931740605 | Cons. | Z1 | Storm | Cons | CS.UNSC | GRPs | SUB.C | RD 01 | Strm |
| B6.33 42 11.052 |  | Sand Bedding | 9.5d | 2026-01-06 A | 2026-01-17 A | B6.33 42 11.051 | 100% |  |  | Labor [28.35 h]; Foreman [14.17 h]; Operator [56.7 h]; Surveyor [14.17 h]; Surveyor Helper [14.17 h]; Loader [16 h]; Water Tanker [16 h]; Dump Truck [16 h]; Plate Compactor [16 h]; 2.51m - 3.5m [3.24] | 2,334.69 | 2,334.69 | 0.000534799059216143 | Cons. | Z1 | Storm | Cons | CS.UNSC | GRPs | SUB.C | RD 01 | Strm |
| B6.33 42 11.053 |  | Pipe Laying | 32.04d | 2026-01-07 A | 2026-02-14 A | B6.33 42 11.052 | 100% |  |  | Labor [28.35 h]; Foreman [14.17 h]; Plumber Helper [14.17 h]; Plumber [14.17 h]; Operator [14.17 h]; Surveyor [14.17 h]; Surveyor Helper [14.17 h]; Mobile Crane [16 h]; 2.51m - 3.5m [29.11] | 20,985.26 | 20,985.26 | 0.00480702077456973 | Cons. | Z1 | Storm | Cons | CS.UNSC | GRPs | SUB.C | RD 01 | Strm |
| B6.33 42 11.054 |  | Embedment & Test | 52.73d | 2026-01-10 A | 2026-03-19 A | B6.33 42 11.053 | 100% | 2026-01-10 | 2026-03-24 | Labor [56.7 h]; Foreman [28.35 h]; Plumber Helper [28.35 h]; Plumber [28.35 h]; Operator [56.7 h]; Surveyor [28.35 h]; Surveyor Helper [28.35 h]; Loader [32 h]; Water Tanker [32 h]; Dump Truck [32 h]; Plate Compactor [32 h]; Roller Compactor [32 h]; 2.51m - 3.5m [12.94] | 9,329.77 | 9,329.77 | 0.00213713931740605 | Cons. | Z1 | Storm | Cons | CS.UNSC | GRPs | SUB.C | RD 01 | Strm |
| B6.33 42 11.055 |  | Backfilling & Warrning Tape | 49.73d | 2026-01-13 A | 2026-03-22 A | B6.33 42 11.054 | 100% | 2026-01-13 | 2026-03-24 | Labor [70.87 h]; Foreman [35.44 h]; Operator [141.75 h]; Surveyor [35.44 h]; Surveyor Helper [35.44 h]; Loader [40 h]; Water Tanker [40 h]; Dump Truck [40 h]; Plate Compactor [40 h]; Roller Compactor [40 h]; 2.51m - 3.5m [6.47] | 4,660.4 | 4,660.4 | 0.00106754119897377 | Cons. | Z1 | Storm | Cons | CS.UNSC | GRPs | SUB.C | RD 01 | Strm |
|  | ?4002 | **?600** |  | 2026-01-10 | 2026-03-30 |  |  |  |  |  |  |  |  |  |  |  |  |  |  |  |  |  |
|  | 3 | **Depth From 1.5m to 2.5m** |  | 2026-01-10 | 2026-03-30 |  |  |  |  |  |  |  |  |  |  |  |  |  |  |  |  |  |
| B6.33 42 11.0401 |  | Excavation | 2.01d | 2026-01-10 A | 2026-01-12 A | B6.33 42 11.051 | 100% |  |  | Labor [28.35 h]; Foreman [14.17 h]; Operator [28.35 h]; Surveyor [14.17 h]; Surveyor Helper [14.17 h]; Excavator (With Bucket) [16 h]; Water Tanker [16 h]; Dump Truck [16 h]; Plate Compactor [16 h]; 1.51m - 2.5m [9.52] | 8,061.23 | 8,061.23 | 5.30950164986435E-005 | Cons. | Z1 | Storm | Cons | CS.UNSC | GRPs | SUB.C | RD 01 | Strm |
| B6.33 42 11.0402 |  | Sand Bedding | 1.01d | 2026-01-12 A | 2026-01-13 A | B6.33 42 11.0401 | 100% |  |  | Labor [28.35 h]; Foreman [14.17 h]; Operator [56.7 h]; Surveyor [14.17 h]; Surveyor Helper [14.17 h]; Loader [16 h]; Water Tanker [16 h]; Dump Truck [16 h]; Plate Compactor [16 h]; 1.51m - 2.5m [9.52] | 8,061.23 | 8,061.23 | 5.30950164986435E-005 | Cons. | Z1 | Storm | Cons | CS.UNSC | GRPs | SUB.C | RD 01 | Strm |
| B6.33 42 11.0403 |  | Pipe Laying | 2.01d | 2026-01-13 A | 2026-01-15 A | B6.33 42 11.0402 | 100% |  |  | Labor [28.35 h]; Foreman [14.17 h]; Plumber Helper [14.17 h]; Plumber [14.17 h]; Operator [14.17 h]; Surveyor [14.17 h]; Surveyor Helper [14.17 h]; Mobile Crane [16 h]; 1.51m - 2.5m [21.65] | 18,321.02 | 18,321.02 | 0.000120670801288806 | Cons. | Z1 | Storm | Cons | CS.UNSC | GRPs | SUB.C | RD 01 | Strm |
| B6.33 42 11.0404 |  | Embedment & Test | 43.04d | 2026-01-21 A | 2026-03-25 A | B6.33 42 11.0403 | 100% |  |  | Labor [56.7 h]; Foreman [28.35 h]; Plumber Helper [28.35 h]; Plumber [28.35 h]; Operator [56.7 h]; Surveyor [28.35 h]; Surveyor Helper [28.35 h]; Loader [32 h]; Water Tanker [32 h]; Dump Truck [32 h]; Plate Compactor [32 h]; Roller Compactor [32 h]; 1.51m - 2.5m [2.6] | 2,198.52 | 2,198.52 | 1.44804590450846E-005 | Cons. | Z1 | Storm | Cons | CS.UNSC | GRPs | SUB.C | RD 01 | Strm |
| B6.33 42 11.0405 |  | Backfilling & Warrning Tape | 43.05d | 2026-01-26 A | 2026-03-30 A | B6.33 42 11.0404, B6.33 42 11.025 | 100% |  |  | Labor [70.87 h]; Foreman [35.44 h]; Operator [141.75 h]; Surveyor [35.44 h]; Surveyor Helper [35.44 h]; Loader [40 h]; Water Tanker [40 h]; Dump Truck [40 h]; Plate Compactor [40 h]; Roller Compactor [40 h]; 1.51m - 2.5m [4.76] | 4,030.61 | 4,030.61 | 2.65475082493218E-005 | Cons. | Z1 | Storm | Cons | CS.UNSC | GRPs | SUB.C | RD 01 | Strm |
|  | ?40021 | **?700** |  | 2026-01-06 | 2026-03-18 |  |  |  |  |  |  |  |  |  |  |  |  |  |  |  |  |  |
|  | 4 | **Depth From 2.5m to 3.5m** |  | 2026-01-06 | 2026-03-18 |  |  |  |  |  |  |  |  |  |  |  |  |  |  |  |  |  |
| B6.33 42 11.111 |  | Excavation | 2.77d | 2026-01-06 A | 2026-01-10 A | B6.33 42 11.0401 | 100% |  |  | Labor [28.35 h]; Foreman [14.17 h]; Operator [28.35 h]; Surveyor [14.17 h]; Surveyor Helper [14.17 h]; Excavator (With Bucket) [16 h]; Water Tanker [16 h]; Dump Truck [16 h]; Plate Compactor [16 h]; 2.51m - 3.5m [5.94] | 6,026.78 | 6,026.78 | 0.00126183149678676 | Cons. | Z1 | Storm | Cons | CS.UNSC | GRPs | SUB.C | RD 01 | Strm |
| B6.33 42 11.112 |  | Sand Bedding | 1.77d | 2026-01-08 A | 2026-01-11 A | B6.33 42 11.111 | 100% |  |  | Labor [28.35 h]; Foreman [14.17 h]; Operator [56.7 h]; Surveyor [14.17 h]; Surveyor Helper [14.17 h]; Loader [16 h]; Water Tanker [16 h]; Dump Truck [16 h]; Plate Compactor [16 h]; 2.51m - 3.5m [1.48] | 1,506.69 | 1,506.69 | 0.00031545787419669 | Cons. | Z1 | Storm | Cons | CS.UNSC | GRPs | SUB.C | RD 01 | Strm |
| B6.33 42 11.113 |  | Pipe Laying | 2.77d | 2026-01-10 A | 2026-01-13 A | B6.33 42 11.112 | 100% |  |  | Labor [28.35 h]; Foreman [14.17 h]; Plumber Helper [14.17 h]; Plumber [14.17 h]; Operator [14.17 h]; Surveyor [14.17 h]; Surveyor Helper [14.17 h]; Mobile Crane [16 h]; 2.51m - 3.5m [13.35] | 13,546.43 | 13,546.43 | 0.00283622675883264 | Cons. | Z1 | Storm | Cons | CS.UNSC | GRPs | SUB.C | RD 01 | Strm |
| B6.33 42 11.114 |  | Embedment & Test | 41.29d | 2026-01-21 A | 2026-03-18 A | B6.33 42 11.113 | 100% |  |  | Labor [56.7 h]; Foreman [28.35 h]; Plumber Helper [28.35 h]; Plumber [28.35 h]; Operator [56.7 h]; Surveyor [28.35 h]; Surveyor Helper [28.35 h]; Loader [32 h]; Water Tanker [32 h]; Dump Truck [32 h]; Plate Compactor [32 h]; Roller Compactor [32 h]; 2.51m - 3.5m [5.94] | 6,026.78 | 6,026.78 | 0.00126183149678676 | Cons. | Z1 | Storm | Cons | CS.UNSC | GRPs | SUB.C | RD 01 | Strm |
| B6.33 42 11.115 |  | Backfilling & Warrning Tape | 35.8d | 2026-01-26 A | 2026-03-16 A | B6.33 42 11.114 | 100% |  |  | Labor [70.87 h]; Foreman [35.44 h]; Operator [141.75 h]; Surveyor [35.44 h]; Surveyor Helper [35.44 h]; Loader [40 h]; Water Tanker [40 h]; Dump Truck [40 h]; Plate Compactor [40 h]; Roller Compactor [40 h]; 2.51m - 3.5m [2.97] | 3,013.39 | 3,013.39 | 0.000630915748393382 | Cons. | Z1 | Storm | Cons | CS.UNSC | GRPs | SUB.C | RD 01 | Strm |
|  | Strom Manholes | **Manholes** |  | 2025-12-27 | 2026-10-05 |  |  |  |  |  |  |  |  |  |  |  |  |  |  |  |  |  |
|  | 1 | **?1200** |  | 2025-12-27 | 2026-09-26 |  |  |  |  |  |  |  |  |  |  |  |  |  |  |  |  |  |
|  | 3 | **Depth From 1.5m to 2.5m** |  | 2025-12-27 | 2026-09-19 |  |  |  |  |  |  |  |  |  |  |  |  |  |  |  |  |  |
| B6.33 05 13.011 |  | Excavation & Compaction | 1.86d | 2025-12-27 A | 2025-12-28 A | B5.33 05 13.061, B6.33 42 11.021 | 100% |  |  | Labor [28.35 h]; Foreman [14.17 h]; Operator [28.35 h]; Surveyor [14.17 h]; Surveyor Helper [14.17 h]; Excavator (With Bucket) [16 h]; Water Tanker [16 h]; Dump Truck [16 h]; Plate Compactor [16 h]; MH depth 1.50 - 2.5m [1.07] | 9,648.47 | 9,648.47 | 2.49372657086146E-005 | Cons. | Z1 | Storm | Cons | CS.UNSC | Manhole | SUB.C | RD 01 | Strm |
| B6.33 05 13.012 |  | Blinding Conc, & RC Base | 1.75d | 2026-03-18 A | 2026-03-19 A | B6.33 05 13.011 | 100% | 2026-03-18 | 2026-03-24 | Labor [42.52 h]; Foreman [21.26 h]; Laboratory Officer [21.26 h]; Carpenter [21.26 h]; Steelfixer [21.26 h]; Mason [21.26 h]; MH depth 1.50 - 2.5m [1.07] | 9,648.47 | 9,648.47 | 2.49372657086146E-005 | Cons. | Z1 | Storm | Cons | CS.UNSC | Manhole | SUB.C | RD 01 | Strm |
| B6.33 05 13.013 |  | Manhole Installation | 12.6d | 2026-06-10 A | 2026-06-24 A | B6.33 05 13.012 | 100% |  |  | Labor [28.35 h]; Operator [28.35 h]; Surveyor [14.17 h]; Surveyor Helper [14.17 h]; Boom Truck [16 h]; Mobile Crane [16 h]; MH depth 1.50 - 2.5m [4.3] | 38,593.88 | 38,593.88 | 9.97490628344586E-005 | Cons. | Z1 | Storm | Cons | CS.UNSC | Manhole | SUB.C | RD 01 | Strm |
| B6.33 05 13.014 |  | Test, Internal Finishing, Benching & Cover (90.00% Completed) | 77d | 2026-06-18 A | 2026-09-15 A | B6.33 05 13.013 | 100% |  |  | Labor [56.13 h]; Foreman [28.07 h]; Plumber Helper [28.07 h]; Plumber [28.07 h]; Mason [28.07 h]; MH depth 1.50 - 2.5m [0.97] | 8,683.62 | 8,683.62 | 2.49372657086146E-005 | Cons. | Z1 | Storm | Cons | CS.UNSC | Manhole | SUB.C | RD 01 | Strm |
| B6.33 05 13.015 |  | Backfilling | 10.5d | 2026-06-21 A | 2026-07-02 A | B6.33 05 13.014 SS | 100% |  |  | Labor [70.87 h]; Foreman [35.44 h]; Operator [70.87 h]; Surveyor [35.44 h]; Surveyor Helper [35.44 h]; Loader [40 h]; Water Tanker [40 h]; Dump Truck [40 h]; Plate Compactor [40 h]; MH depth 1.50 - 2.5m [2.15] | 19,296.94 | 19,296.94 | 4.98745314172292E-005 | Cons. | Z1 | Storm | Cons | CS.UNSC | Manhole | SUB.C | RD 01 | Strm |
| B6.33 05 13.014_R |  | Test, Internal Finishing, Benching & Cover(Rem) | 3d | 2026-09-17 A | 2026-09-19 A | B6.33 05 13.013, B6.33 05 13.014 | 100% | 2026-09-16 | 2026-09-19 | Labor [6.24 h]; Foreman [3.12 h]; Plumber Helper [3.12 h]; Plumber [3.12 h]; Mason [3.12 h]; MH depth 1.50 - 2.5m [0.11] | 964.85 | 964.85 | 2.49372657086146E-005 | Cons. | Z1 | Storm | Cons | CS.UNSC | Manhole | SUB.C | RD 01 | Strm |

| ID | WBS | Activity | Duration | Start | Finish | Predecessors | Complete | Planned start | Planned finish | Resources | Cost | Actual cost | Weight % | DMM2 Weekly Progress | DMM2 Zones | Networks & Stations | DMM2 Phases | UNASCO | Networks Components | Subcontractors works | Dmm2 Roads | Yellow Sheet |
| --- | --- | --- | --- | --- | --- | --- | --- | --- | --- | --- | --- | --- | --- | --- | --- | --- | --- | --- | --- | --- | --- | --- |
|  | 4 | **Depth From 2.5m to 3.5m** |  | 2026-01-08 | 2026-09-22 |  |  |  |  |  |  |  |  |  |  |  |  |  |  |  |  |  |
| B6.33 05 13.021 |  | Excavation & Compaction | 0.48d | 2026-01-08 A | 2026-01-10 A | B6.33 05 13.011 | 100% |  |  | Labor [28.35 h]; Foreman [14.17 h]; Operator [28.35 h]; Surveyor [14.17 h]; Surveyor Helper [14.17 h]; Excavator (With Bucket) [16 h]; Water Tanker [16 h]; Dump Truck [16 h]; Plate Compactor [16 h]; MH depth 2.51 - 3.5m [0.44] | 5,582.01 | 5,582.01 | 0.0273617146825842 | Cons. | Z1 | Storm | Cons | CS.UNSC | Manhole | SUB.C | RD 01 | Strm |
| B6.33 05 13.022 |  | Blinding Conc, & RC Base | 1.5d | 2026-03-04 A | 2026-03-05 A | B6.33 05 13.021 | 100% |  |  | Labor [42.52 h]; Foreman [21.26 h]; Laboratory Officer [21.26 h]; Carpenter [21.26 h]; Steelfixer [21.26 h]; Mason [21.26 h]; MH depth 2.51 - 3.5m [0.29] | 3,721.34 | 3,721.34 | 0.0182411431217228 | Cons. | Z1 | Storm | Cons | CS.UNSC | Manhole | SUB.C | RD 01 | Strm |
| B6.33 05 13.023 |  | Manhole Installation | 0.5d | 2026-03-07 A | 2026-03-07 A | B6.33 05 13.022 | 100% |  |  | Labor [28.35 h]; Operator [28.35 h]; Surveyor [14.17 h]; Surveyor Helper [14.17 h]; Boom Truck [16 h]; Mobile Crane [16 h]; MH depth 2.51 - 3.5m [1.4] | 17,767.29 | 17,767.29 | 0.0870911397248345 | Cons. | Z1 | Storm | Cons | CS.UNSC | Manhole | SUB.C | RD 01 | Strm |
| B6.33 05 13.025 |  | Backfilling | 26.5d | 2026-06-03 A | 2026-07-04 A | B6.33 42 11.114 | 100% |  |  | Labor [70.87 h]; Foreman [35.44 h]; Operator [70.87 h]; Surveyor [35.44 h]; Surveyor Helper [35.44 h]; Loader [40 h]; Water Tanker [40 h]; Dump Truck [40 h]; Plate Compactor [40 h]; MH depth 2.51 - 3.5m [0.58] | 7,435.47 | 7,435.47 | 0.0364469351908841 | Cons. | Z1 | Storm | Cons | CS.UNSC | Manhole | SUB.C | RD 01 | Strm |
| B6.33 05 13.024 |  | Test, Internal Finishing, Benching & Cover (90.00% Completed) | 78d | 2026-06-17 A | 2026-09-15 A | B6.33 05 13.023 | 100% |  |  | Labor [56.13 h]; Foreman [28.07 h]; Plumber Helper [28.07 h]; Plumber [28.07 h]; Mason [28.07 h]; MH depth 2.51 - 3.5m [0.26] | 3,349.2 | 3,349.2 | 0.0182411431217228 | Cons. | Z1 | Storm | Cons | CS.UNSC | Manhole | SUB.C | RD 01 | Strm |
| B6.33 05 13.024_R |  | Test, Internal Finishing, Benching & Cover(Rem) | 3d | 2026-09-20 A | 2026-09-22 A | B6.33 05 13.023, B6.33 05 13.024, B6.33 05 13.014_R | 100% |  |  | Labor [6.24 h]; Foreman [3.12 h]; Plumber Helper [3.12 h]; Plumber [3.12 h]; Mason [3.12 h]; MH depth 2.51 - 3.5m [0.03] | 372.13 | 372.13 | 0.0182411431217228 | Cons. | Z1 | Storm | Cons | CS.UNSC | Manhole | SUB.C | RD 01 | Strm |
|  | 1 | **Depth From 3.5m to 4.5m** |  | 2026-01-28 | 2026-09-26 |  |  |  |  |  |  |  |  |  |  |  |  |  |  |  |  |  |
| B6.33 05 13.115 |  | Excavation & Compaction | 2d | 2026-01-28 A | 2026-01-29 A | B6.33 05 13.021 | 100% |  |  | Labor [28.35 h]; Foreman [14.17 h]; Operator [28.35 h]; Surveyor [14.17 h]; Surveyor Helper [14.17 h]; Excavator (With Bucket) [16 h]; Water Tanker [16 h]; Dump Truck [16 h]; Plate Compactor [16 h]; MH depth 3.51 - 4.5m [0.29] | 5,177.59 | 5,177.59 | 0.000975746586681342 | Cons. | Z1 | Storm | Cons | CS.UNSC | Manhole | SUB.C | RD 01 | Strm |
| B6.33 05 13.85 |  | Blinding Conc, & RC Base | 6d | 2026-04-19 A | 2026-04-25 A | B6.33 05 13.115 | 100% |  |  | Labor [42.52 h]; Foreman [21.26 h]; Laboratory Officer [21.26 h]; Carpenter [21.26 h]; Steelfixer [21.26 h]; Mason [21.26 h]; MH depth 3.51 - 4.5m [0.19] | 3,365.43 | 3,365.43 | 0.000634235281342876 | Cons. | Z1 | Storm | Cons | CS.UNSC | Manhole | SUB.C | RD 01 | Strm |
| B6.33 05 13.95 |  | Manhole Installation | 19.6d | 2026-06-10 A | 2026-07-02 A | B6.33 05 13.85 | 100% |  |  | Labor [28.35 h]; Operator [28.35 h]; Surveyor [14.17 h]; Surveyor Helper [14.17 h]; Boom Truck [16 h]; Mobile Crane [16 h]; MH depth 3.51 - 4.5m [0.93] | 16,407.41 | 16,407.41 | 0.00309206974288844 | Cons. | Z1 | Storm | Cons | CS.UNSC | Manhole | SUB.C | RD 01 | Strm |
| B6.33 05 13.105 |  | Test, Internal Finishing, Benching & Cover (90.00% Completed) | 77d | 2026-06-18 A | 2026-09-15 A | B6.33 05 13.95 | 100% |  |  | Labor [56.13 h]; Foreman [28.07 h]; Plumber Helper [28.07 h]; Plumber [28.07 h]; Mason [28.07 h]; MH depth 3.51 - 4.5m [0.17] | 3,028.89 | 3,028.89 | 0.000634235281342876 | Cons. | Z1 | Storm | Cons | CS.UNSC | Manhole | SUB.C | RD 01 | Strm |
| B6.33 05 13.125 |  | Backfilling | 12.5d | 2026-06-21 A | 2026-07-05 A | B6.33 05 13.95 | 100% |  |  | Labor [70.87 h]; Foreman [35.44 h]; Operator [70.87 h]; Surveyor [35.44 h]; Surveyor Helper [35.44 h]; Loader [40 h]; Water Tanker [40 h]; Dump Truck [40 h]; Plate Compactor [40 h]; MH depth 3.51 - 4.5m [0.4] | 6,989.75 | 6,989.75 | 0.00131725789201981 | Cons. | Z1 | Storm | Cons | CS.UNSC | Manhole | SUB.C | RD 01 | Strm |
| B6.33 05 13.105_R |  | Test, Internal Finishing, Benching & Cover(Rem) | 3d | 2026-09-24 A | 2026-09-26 A | B6.33 05 13.95, B6.33 05 13.105 | 100% | 2026-09-16 | 2026-09-19 | Labor [6.24 h]; Foreman [3.12 h]; Plumber Helper [3.12 h]; Plumber [3.12 h]; Mason [3.12 h]; MH depth 3.51 - 4.5m [0.02] | 336.54 | 336.54 | 0.000634235281342876 | Cons. | Z1 | Storm | Cons | CS.UNSC | Manhole | SUB.C | RD 01 | Strm |
|  | 2 | **?1500** |  | 2026-03-04 | 2026-09-30 |  |  |  |  |  |  |  |  |  |  |  |  |  |  |  |  |  |
|  | 3 | **Depth From 1.5m to 2.5m** |  | 2026-03-04 | 2026-09-27 |  |  |  |  |  |  |  |  |  |  |  |  |  |  |  |  |  |
| B6.33 05 13.041 |  | Excavation & Compaction | 11.15d | 2026-03-04 A | 2026-03-25 A | B6.33 05 13.115 | 100% |  |  | Labor [28.35 h]; Foreman [14.17 h]; Operator [28.35 h]; Surveyor [14.17 h]; Surveyor Helper [14.17 h]; Excavator (With Bucket) [16 h]; Water Tanker [16 h]; Dump Truck [16 h]; Plate Compactor [16 h]; MH depth 1.50 - 2.5m [2.05] | 22,286.75 | 22,286.75 | 0.000354689664613492 | Cons. | Z1 | Storm | Cons | CS.UNSC | Manhole | SUB.C | RD 01 | Strm |
| B6.33 05 13.042 |  | Blinding Conc, & RC Base | 7d | 2026-03-14 A | 2026-03-28 A | B6.33 05 13.041 | 100% |  |  | Labor [42.52 h]; Foreman [21.26 h]; Laboratory Officer [21.26 h]; Carpenter [21.26 h]; Steelfixer [21.26 h]; Mason [21.26 h]; MH depth 1.50 - 2.5m [1.22] | 13,254.35 | 13,254.35 | 0.00021094058124097 | Cons. | Z1 | Storm | Cons | CS.UNSC | Manhole | SUB.C | RD 01 | Strm |
| B6.33 05 13.043 |  | Manhole Installation | 13.6d | 2026-06-10 A | 2026-06-25 A | B6.33 05 13.042 | 100% |  |  | Labor [28.35 h]; Operator [28.35 h]; Surveyor [14.17 h]; Surveyor Helper [14.17 h]; Boom Truck [16 h]; Mobile Crane [16 h]; MH depth 1.50 - 2.5m [5.23] | 56,804.36 | 56,804.36 | 0.000904031062461299 | Cons. | Z1 | Storm | Cons | CS.UNSC | Manhole | SUB.C | RD 01 | Strm |
| B6.33 05 13.044 |  | Test, Internal Finishing, Benching & Cover (90.00% Completed) | 77d | 2026-06-18 A | 2026-09-15 A | B6.33 05 13.043 | 100% |  |  | Labor [56.13 h]; Foreman [28.07 h]; Plumber Helper [28.07 h]; Plumber [28.07 h]; Mason [28.07 h]; MH depth 1.50 - 2.5m [1.1] | 11,928.92 | 11,928.92 | 0.00021094058124097 | Cons. | Z1 | Storm | Cons | CS.UNSC | Manhole | SUB.C | RD 01 | Strm |
| B6.33 05 13.045 |  | Backfilling | 6.5d | 2026-06-22 A | 2026-06-29 A | B6.33 05 13.015 | 100% |  |  | Labor [70.87 h]; Foreman [35.44 h]; Operator [70.87 h]; Surveyor [35.44 h]; Surveyor Helper [35.44 h]; Loader [40 h]; Water Tanker [40 h]; Dump Truck [40 h]; Plate Compactor [40 h]; MH depth 1.50 - 2.5m [2.27] | 24,615.22 | 24,615.22 | 0.000391746793733233 | Cons. | Z1 | Storm | Cons | CS.UNSC | Manhole | SUB.C | RD 01 | Strm |
| B6.33 05 13.044_R |  | Test, Internal Finishing, Benching & Cover(Rem) | 3d | 2026-09-24 A | 2026-09-27 A | B6.33 05 13.043, B6.33 05 13.044, B6.33 05 13.024_R, B6.33 05 13.105_R | 100% |  |  | Labor [6.24 h]; Foreman [3.12 h]; Plumber Helper [3.12 h]; Plumber [3.12 h]; Mason [3.12 h]; MH depth 1.50 - 2.5m [0.12] | 1,325.43 | 1,325.43 | 0.00021094058124097 | Cons. | Z1 | Storm | Cons | CS.UNSC | Manhole | SUB.C | RD 01 | Strm |
|  | 4 | **Depth From 2.5m to 3.5m** |  | 2026-03-07 | 2026-09-30 |  |  |  |  |  |  |  |  |  |  |  |  |  |  |  |  |  |
| B6.33 05 13.051 |  | Excavation & Compaction | 5.38d | 2026-03-07 A | 2026-03-15 A | B6.33 05 13.041 | 100% |  |  | Labor [28.35 h]; Foreman [14.17 h]; Operator [28.35 h]; Surveyor [14.17 h]; Surveyor Helper [14.17 h]; Excavator (With Bucket) [16 h]; Water Tanker [16 h]; Dump Truck [16 h]; Plate Compactor [16 h]; MH depth 2.51 - 3.5m [0.26] | 3,722.58 | 3,722.58 | 0.00193019830555769 | Cons. | Z1 | Storm | Cons | CS.UNSC | Manhole | SUB.C | RD 01 | Strm |
| B6.33 05 13.052 |  | Blinding Conc, & RC Base | 2.5d | 2026-03-15 A | 2026-03-18 A | B6.33 05 13.051 | 100% |  |  | Labor [42.52 h]; Foreman [21.26 h]; Laboratory Officer [21.26 h]; Carpenter [21.26 h]; Steelfixer [21.26 h]; Mason [21.26 h]; MH depth 2.51 - 3.5m [0.17] | 2,481.67 | 2,481.67 | 0.00128677283889427 | Cons. | Z1 | Storm | Cons | CS.UNSC | Manhole | SUB.C | RD 01 | Strm |
| B6.33 05 13.053 |  | Manhole Installation | 1d | 2026-03-24 A | 2026-03-25 A | B6.33 05 13.052 | 100% |  |  | Labor [28.35 h]; Operator [28.35 h]; Surveyor [14.17 h]; Surveyor Helper [14.17 h]; Boom Truck [16 h]; Mobile Crane [16 h]; MH depth 2.51 - 3.5m [0.8] | 11,515.47 | 11,515.47 | 0.00597090210688867 | Cons. | Z1 | Storm | Cons | CS.UNSC | Manhole | SUB.C | RD 01 | Strm |
| B6.33 05 13.054 |  | Test, Internal Finishing, Benching & Cover (90.00% Completed) | 78d | 2026-06-17 A | 2026-09-15 A | B6.33 05 13.053 | 100% |  |  | Labor [56.13 h]; Foreman [28.07 h]; Plumber Helper [28.07 h]; Plumber [28.07 h]; Mason [28.07 h]; MH depth 2.51 - 3.5m [0.15] | 2,233.5 | 2,233.5 | 0.00128677283889427 | Cons. | Z1 | Storm | Cons | CS.UNSC | Manhole | SUB.C | RD 01 | Strm |
| B6.33 05 13.055 |  | Backfilling | 4d | 2026-07-02 A | 2026-07-07 A | B6.33 05 13.054 SS+1d, B6.33 05 13.054 FF+1d | 100% |  |  | Labor [70.87 h]; Foreman [35.44 h]; Operator [70.87 h]; Surveyor [35.44 h]; Surveyor Helper [35.44 h]; Loader [40 h]; Water Tanker [40 h]; Dump Truck [40 h]; Plate Compactor [40 h]; MH depth 2.51 - 3.5m [0.34] | 4,963.35 | 4,963.35 | 0.00257355227310287 | Cons. | Z1 | Storm | Cons | CS.UNSC | Manhole | SUB.C | RD 01 | Strm |
| B6.33 05 13.054_R |  | Test, Internal Finishing, Benching & Cover(Rem) | 3d | 2026-09-28 A | 2026-09-30 A | B6.33 05 13.053, B6.33 05 13.054, B6.33 05 13.044_R | 100% |  |  | Labor [6.24 h]; Foreman [3.12 h]; Plumber Helper [3.12 h]; Plumber [3.12 h]; Mason [3.12 h]; MH depth 2.51 - 3.5m [0.02] | 248.17 | 248.17 | 0.00128677283889427 | Cons. | Z1 | Storm | Cons | CS.UNSC | Manhole | SUB.C | RD 01 | Strm |

| ID | WBS | Activity | Duration | Start | Finish | Predecessors | Complete | Planned start | Planned finish | Resources | Cost | Actual cost | Weight % | DMM2 Weekly Progress | DMM2 Zones | Networks & Stations | DMM2 Phases | UNASCO | Networks Components | Subcontractors works | Dmm2 Roads | Yellow Sheet |
| --- | --- | --- | --- | --- | --- | --- | --- | --- | --- | --- | --- | --- | --- | --- | --- | --- | --- | --- | --- | --- | --- | --- |
|  | 3 | **?2000** |  | 2026-01-29 | 2026-10-05 |  |  |  |  |  |  |  |  |  |  |  |  |  |  |  |  |  |
|  | 4 | **Depth From 2.5m to 3.5m** |  | 2026-02-01 | 2026-10-04 |  |  |  |  |  |  |  |  |  |  |  |  |  |  |  |  |  |
| B6.33 05 13.071 |  | Excavation & Compaction | 2d | 2026-02-01 A | 2026-02-02 A | B6.33 05 13.051 | 100% |  |  | Labor [28.35 h]; Foreman [14.17 h]; Operator [28.35 h]; Surveyor [14.17 h]; Surveyor Helper [14.17 h]; Excavator (With Bucket) [16 h]; Water Tanker [16 h]; Dump Truck [16 h]; Plate Compactor [16 h]; Storm MH depth 2.51 - 3.5m [0.63] | 10,765.08 | 10,765.08 | 0.00208346832855844 | Cons. | Z1 | Storm | Cons | CS.UNSC | Manhole | SUB.C | RD 01 | Strm |
| B6.33 05 13.072 |  | Blinding Conc, & RC Base | 3d | 2026-04-04 A | 2026-04-06 A | B6.33 05 13.071 | 100% |  |  | Labor [42.52 h]; Foreman [21.26 h]; Laboratory Officer [21.26 h]; Carpenter [21.26 h]; Steelfixer [21.26 h]; Mason [21.26 h]; Storm MH depth 2.51 - 3.5m [0.42] | 7,095.17 | 7,095.17 | 0.00137319503473171 | Cons. | Z1 | Storm | Cons | CS.UNSC | Manhole | SUB.C | RD 01 | Strm |
| B6.33 05 13.073 |  | Manhole Installation | 18.6d | 2026-06-10 A | 2026-07-01 A | B6.33 05 13.072 | 100% |  |  | Labor [28.35 h]; Operator [28.35 h]; Surveyor [14.17 h]; Surveyor Helper [14.17 h]; Boom Truck [16 h]; Mobile Crane [16 h]; Storm MH depth 2.51 - 3.5m [1.9] | 32,404.78 | 32,404.78 | 0.00651661420002291 | Cons. | Z1 | Storm | Cons | CS.UNSC | Manhole | SUB.C | RD 01 | Strm |
| B6.33 05 13.074 |  | Test, Internal Finishing, Benching & Cover (90.00% Completed) | 77d | 2026-06-18 A | 2026-09-15 A | B6.33 05 13.073 | 100% |  |  | Labor [56.13 h]; Foreman [28.07 h]; Plumber Helper [28.07 h]; Plumber [28.07 h]; Mason [28.07 h]; Storm MH depth 2.51 - 3.5m [0.37] | 6,385.65 | 6,385.65 | 0.00137319503473171 | Cons. | Z1 | Storm | Cons | CS.UNSC | Manhole | SUB.C | RD 01 | Strm |
| B6.33 05 13.075 |  | Backfilling | 11.5d | 2026-06-21 A | 2026-07-04 A | B6.33 05 13.074 SS+1d, B6.33 05 13.074 FF+1d | 100% |  |  | Labor [70.87 h]; Foreman [35.44 h]; Operator [70.87 h]; Surveyor [35.44 h]; Surveyor Helper [35.44 h]; Loader [40 h]; Water Tanker [40 h]; Dump Truck [40 h]; Plate Compactor [40 h]; Storm MH depth 2.51 - 3.5m [0.91] | 15,506.25 | 15,506.25 | 0.00300107232895791 | Cons. | Z1 | Storm | Cons | CS.UNSC | Manhole | SUB.C | RD 01 | Strm |
| B6.33 05 13.074_R |  | Test, Internal Finishing, Benching & Cover(Rem) | 3d | 2026-10-01 A | 2026-10-04 A | B6.33 05 13.073, B6.33 05 13.074, B6.33 05 13.054_R | 100% |  |  | Labor [6.24 h]; Foreman [3.12 h]; Plumber Helper [3.12 h]; Plumber [3.12 h]; Mason [3.12 h]; Storm MH depth 2.51 - 3.5m [0.04] | 709.52 | 709.52 | 0.00137319503473171 | Cons. | Z1 | Storm | Cons | CS.UNSC | Manhole | SUB.C | RD 01 | Strm |
|  | 1 | **Depth From 3.5m to 4.5m** |  | 2026-01-29 | 2026-10-05 |  |  |  |  |  |  |  |  |  |  |  |  |  |  |  |  |  |
| B6.33 05 13.081 |  | Excavation & Compaction | 2d | 2026-01-29 A | 2026-01-31 A | B6.33 05 13.071 | 100% |  |  | Labor [28.35 h]; Foreman [14.17 h]; Operator [28.35 h]; Surveyor [14.17 h]; Surveyor Helper [14.17 h]; Excavator (With Bucket) [16 h]; Water Tanker [16 h]; Dump Truck [16 h]; Plate Compactor [16 h]; Storm MH depth 3.51 -4.5m [0.57] | 12,909.84 | 12,909.84 | 0.00249450617796315 | Cons. | Z1 | Storm | Cons | CS.UNSC | Manhole | SUB.C | RD 01 | Strm |
| B6.33 05 13.082 |  | Blinding Conc, & RC Base | 3d | 2026-06-10 A | 2026-06-13 A | B6.33 05 13.081 | 100% |  |  | Labor [42.52 h]; Foreman [21.26 h]; Laboratory Officer [21.26 h]; Carpenter [21.26 h]; Steelfixer [21.26 h]; Mason [21.26 h]; Storm MH depth 3.51 -4.5m [0.39] | 8,714.14 | 8,714.14 | 0.00168379167012513 | Cons. | Z1 | Storm | Cons | CS.UNSC | Manhole | SUB.C | RD 01 | Strm |
| B6.33 05 13.083 |  | Manhole Installation | 15.6d | 2026-06-14 A | 2026-07-01 A | B6.33 05 13.082 | 100% |  |  | Labor [28.35 h]; Operator [28.35 h]; Surveyor [14.17 h]; Surveyor Helper [14.17 h]; Boom Truck [16 h]; Mobile Crane [16 h]; Storm MH depth 3.51 -4.5m [1.87] | 42,079.22 | 42,079.22 | 0.00813076259576856 | Cons. | Z1 | Storm | Cons | CS.UNSC | Manhole | SUB.C | RD 01 | Strm |
| B6.33 05 13.084 |  | Test, Internal Finishing, Benching & Cover (90.00% Completed) | 77d | 2026-06-18 A | 2026-09-15 A | B6.33 05 13.083 | 100% |  |  | Labor [56.13 h]; Foreman [28.07 h]; Plumber Helper [28.07 h]; Plumber [28.07 h]; Mason [28.07 h]; Storm MH depth 3.51 -4.5m [0.35] | 7,842.73 | 7,842.73 | 0.00168379167012513 | Cons. | Z1 | Storm | Cons | CS.UNSC | Manhole | SUB.C | RD 01 | Strm |
| B6.33 05 13.085 |  | Backfilling | 14.5d | 2026-06-20 A | 2026-07-06 A | B6.33 05 13.084 SS+1d, B6.33 05 13.084 FF+1d | 100% |  |  | Labor [70.87 h]; Foreman [35.44 h]; Operator [70.87 h]; Surveyor [35.44 h]; Surveyor Helper [35.44 h]; Loader [40 h]; Water Tanker [40 h]; Dump Truck [40 h]; Plate Compactor [40 h]; Storm MH depth 3.51 -4.5m [0.78] | 17,428.33 | 17,428.33 | 0.00336759197047231 | Cons. | Z1 | Storm | Cons | CS.UNSC | Manhole | SUB.C | RD 01 | Strm |
| B6.33 05 13.084_R |  | Test, Internal Finishing, Benching & Cover(Rem) | 3d | 2026-10-05 A | 2026-10-05 A | B6.33 05 13.083, B6.33 05 13.084, B6.33 05 13.074_R | 100% | 2026-10-05 | 2026-10-07 | Labor [6.24 h]; Foreman [3.12 h]; Plumber Helper [3.12 h]; Plumber [3.12 h]; Mason [3.12 h]; Storm MH depth 3.51 -4.5m [0.04] | 871.41 | 871.41 | 0.00168379167012513 | Cons. | Z1 | Storm | Cons | CS.UNSC | Manhole | SUB.C | RD 01 | Strm |
|  | Catch Basins | **Catch Basins** |  | 2026-03-04 | 2026-09-29 |  |  |  |  |  |  |  |  |  |  |  |  |  |  |  |  |  |
|  | Sing | **Single** |  | 2026-03-23 | 2026-09-29 |  |  |  |  |  |  |  |  |  |  |  |  |  |  |  |  |  |
| B6.33 05 63.071 |  | Excavation, Compaction & Vapour Barrier | 50.34d | 2026-03-23 A | 2026-05-21 A | B6.33 05 13.041 | 100% | 2026-03-24 | 2026-05-21 | Labor [28.35 h]; Foreman [14.17 h]; Operator [28.35 h]; Surveyor [14.17 h]; Surveyor Helper [14.17 h]; Excavator (With Bucket) [16 h]; Water Tanker [16 h]; Dump Truck [16 h]; Roller Compactor [16 h]; Single Catch basin [2.98] | 13,460.88 | 13,460.88 | 0.00295277448760277 | Cons. | Z1 | Storm | Cons | CS.UNSC | CBs | SUB.C | RD 01 | Strm |
| B6.33 05 63.073 |  | Blinding Conc. | 2d | 2026-05-21 A | 2026-05-24 A | B6.33 05 63.071 | 100% |  |  | Labor [28.35 h]; Foreman [14.17 h]; Laboratory Officer [14.17 h]; Carpenter [14.17 h]; Steelfixer [14.17 h]; Mason [14.17 h]; Single Catch basin [1.99] | 8,993.51 | 8,993.51 | 0.00197281439564727 | Cons. | Z1 | Storm | Cons | CS.UNSC | CBs | SUB.C | RD 01 | Strm |
| B6.33 05 63.074 |  | Catch Basin Installation | 21.81d | 2026-05-24 A | 2026-06-23 A | B6.33 05 63.073 | 100% |  |  | Labor [42.52 h]; Foreman [21.26 h]; Carpenter [21.26 h]; Steelfixer [21.26 h]; Mason [21.26 h]; Operator [42.52 h]; Surveyor [21.26 h]; Surveyor Helper [21.26 h]; Boom Truck [24 h]; Single Catch basin [8.93] | 40,382.64 | 40,382.64 | 0.00885832346280832 | Cons. | Z1 | Storm | Cons | CS.UNSC | CBs | SUB.C | RD 01 | Strm |
| B6.33 05 63.072 |  | Backfilling, DI Frame & Grate Cover Fixing (90.00% Completed) | 77.85d | 2026-06-17 A | 2026-09-15 A | B6.33 05 63.074, B6.33 42 11.351010 | 100% |  |  | Labor [70.17 h]; Foreman [35.08 h]; Operator [70.17 h]; Surveyor [35.08 h]; Surveyor Helper [35.08 h]; Loader [36 h]; Water Tanker [36 h]; Dump Truck [36 h]; Plate Compactor [36 h]; Single Catch basin [5.36] | 24,229.58 | 24,229.58 | 0.00590554897520555 | Cons. | Z1 | Storm | Cons | CS.UNSC | CBs | SUB.C | RD 01 | Strm |
| B6.33 05 63.072_R |  | Backfilling, DI Frame & Grate Cover Fixing(Rem) | 3d | 2026-09-24 A | 2026-09-29 A | B6.33 05 63.074, B6.33 42 11.351010, B6.33 05 63.072 | 100% | 2026-09-16 | 2026-09-19 | Labor [7.8 h]; Foreman [3.9 h]; Operator [7.8 h]; Surveyor [3.9 h]; Surveyor Helper [3.9 h]; Loader [4 h]; Water Tanker [4 h]; Dump Truck [4 h]; Plate Compactor [4 h]; Single Catch basin [0.6] | 2,692.18 | 2,692.18 | 0.00590554897520555 | Cons. | Z1 | Storm | Cons | CS.UNSC | CBs | SUB.C | RD 01 | Strm |
|  | Dou | **Double** |  | 2026-07-29 | 2026-09-22 |  |  |  |  |  |  |  |  |  |  |  |  |  |  |  |  |  |
| B6.33 05 63.081 |  | Excavation, Compaction & Vapour Barrier | 22.2d | 2026-07-29 A | 2026-08-24 A | B6.33 05 63.071 | 100% |  |  | Labor [28.35 h]; Foreman [14.17 h]; Operator [28.35 h]; Surveyor [14.17 h]; Surveyor Helper [14.17 h]; Excavator (With Bucket) [16 h]; Water Tanker [16 h]; Dump Truck [16 h]; Roller Compactor [16 h]; Double Catch basin [0.6] | 5,258.04 | 5,258.04 | 0.000879450288447266 | Cons. | Z1 | Storm | Cons | CS.UNSC | CBs | SUB.C | RD 01 | Strm |
| B6.33 05 63.083 |  | Blinding Conc. | 23.2d | 2026-08-01 A | 2026-08-27 A | B6.33 05 63.081 | 100% |  |  | Labor [28.35 h]; Foreman [14.17 h]; Laboratory Officer [14.17 h]; Carpenter [14.17 h]; Steelfixer [14.17 h]; Mason [14.17 h]; Double Catch basin [0.39] | 3,455.28 | 3,455.28 | 0.000577924475265344 | Cons. | Z1 | Storm | Cons | CS.UNSC | CBs | SUB.C | RD 01 | Strm |
| B6.33 05 63.084 |  | Catch Basin Installation | 24.3d | 2026-08-02 A | 2026-08-30 A | B6.33 05 63.083 | 100% |  |  | Labor [42.52 h]; Foreman [21.26 h]; Carpenter [21.26 h]; Steelfixer [21.26 h]; Mason [21.26 h]; Operator [42.52 h]; Surveyor [21.26 h]; Surveyor Helper [21.26 h]; Boom Truck [24 h]; Double Catch basin [1.81] | 15,924.38 | 15,924.38 | 0.00266348484222734 | Cons. | Z1 | Storm | Cons | CS.UNSC | CBs | SUB.C | RD 01 | Strm |
| B6.33 05 63.082 |  | Backfilling, DI Frame & Grate Cover Fixing (90.00% Completed) | 38d | 2026-08-03 A | 2026-09-15 A | B6.33 05 63.084, B6.33 42 11.361010 | 100% |  |  | Labor [70.17 h]; Foreman [35.08 h]; Operator [70.17 h]; Surveyor [35.08 h]; Surveyor Helper [35.08 h]; Loader [36 h]; Water Tanker [36 h]; Dump Truck [36 h]; Plate Compactor [36 h]; Double Catch basin [1.07] | 9,464.49 | 9,464.49 | 0.00175890508448974 | Cons. | Z1 | Storm | Cons | CS.UNSC | CBs | SUB.C | RD 01 | Strm |
| B6.33 05 63.082_R |  | Backfilling, DI Frame & Grate Cover Fixing(Rem) | 3d | 2026-09-17 A | 2026-09-22 A | B6.33 05 63.084, B6.33 42 11.361010, B6.33 05 63.082 | 100% | 2026-09-16 | 2026-09-19 | Labor [7.8 h]; Foreman [3.9 h]; Operator [7.8 h]; Surveyor [3.9 h]; Surveyor Helper [3.9 h]; Loader [4 h]; Water Tanker [4 h]; Dump Truck [4 h]; Plate Compactor [4 h]; Double Catch basin [0.12] | 1,051.61 | 1,051.61 | 0.00175890508448974 | Cons. | Z1 | Storm | Cons | CS.UNSC | CBs | SUB.C | RD 01 | Strm |

| ID | WBS | Activity | Duration | Start | Finish | Predecessors | Complete | Planned start | Planned finish | Resources | Cost | Actual cost | Weight % | DMM2 Weekly Progress | DMM2 Zones | Networks & Stations | DMM2 Phases | UNASCO | Networks Components | Subcontractors works | Dmm2 Roads | Yellow Sheet |
| --- | --- | --- | --- | --- | --- | --- | --- | --- | --- | --- | --- | --- | --- | --- | --- | --- | --- | --- | --- | --- | --- | --- |
|  | UPVC | **UPVC** |  | 2026-03-04 | 2026-08-25 |  |  |  |  |  |  |  |  |  |  |  |  |  |  |  |  |  |
|  | UPVC300 | **?300 From 0.0 to 1.5m** |  | 2026-03-04 | 2026-04-11 |  |  |  |  |  |  |  |  |  |  |  |  |  |  |  |  |  |
| B6.33 42 11.351010 |  | Fittings & Pipe Installation | 3d | 2026-03-04 A | 2026-03-09 A | B6.33 42 11.351000 | 100% |  |  | Labor [28.35 h]; Foreman [14.17 h]; Plumber Helper [14.17 h]; Plumber [14.17 h]; Surveyor [14.17 h]; Surveyor Helper [14.17 h]; less than 1.5 [186.46] | 112,143.85 | 112,143.85 | 0.0603343421083148 | Cons. | Z1 | Storm | Cons | CS.UNSC | UPVC | SUB.C | RD 01 | Strm |
| B6.33 42 11.351000 |  | Catch Basin Opening Prep. | 8d | 2026-04-01 A | 2026-04-11 A | B6.33 05 63.074 | 100% |  |  | Labor [28.35 h]; Foreman [14.17 h]; Plumber Helper [14.17 h]; Plumber [14.17 h]; less than 1.5 [46.62] | 28,035.96 | 28,035.96 | 0.0150835855285905 | Cons. | Z1 | Storm | Cons | CS.UNSC | UPVC | SUB.C | RD 01 | Strm |
|  | UPVC3001 | **?400 From 0.0 to 1.5m** |  | 2026-04-12 | 2026-08-25 |  |  |  |  |  |  |  |  |  |  |  |  |  |  |  |  |  |
| B6.33 42 11.361010 |  | Fittings & Pipe Installation | 105.76d | 2026-04-12 A | 2026-08-18 A | B6.33 42 11.361000 | 100% |  |  | Labor [28.35 h]; Foreman [14.17 h]; Plumber Helper [14.17 h]; Plumber [14.17 h]; Surveyor [14.17 h]; Surveyor Helper [14.17 h]; less than 1.5 [50.4] | 30,267.8 | 30,267.8 | 0.0175117698005694 | Cons. | Z1 | Storm | Cons | CS.UNSC | UPVC | SUB.C | RD 01 | Strm |
| B6.33 42 11.361000 |  | Catch Basin Opening Prep. | 72.1d | 2026-06-02 A | 2026-08-25 A | B6.33 05 63.084 | 100% |  |  | Labor [28.35 h]; Foreman [14.17 h]; Plumber Helper [14.17 h]; Plumber [14.17 h]; less than 1.5 [12.6] | 7,566.95 | 7,566.95 | 0.00437794245014235 | Cons. | Z1 | Storm | Cons | CS.UNSC | UPVC | SUB.C | RD 01 | Strm |
|  | Potable | **Potable Network** |  | 2026-02-01 | 2026-10-10 |  |  |  |  |  |  |  |  |  |  |  |  |  |  |  |  |  |
|  | HDPE | **HDPE Pipes** |  | 2026-02-01 | 2026-06-28 |  |  |  |  |  |  |  |  |  |  |  |  |  |  |  |  |  |
|  | ?110mm | **?110mm** |  | 2026-02-01 | 2026-06-28 |  |  |  |  |  |  |  |  |  |  |  |  |  |  |  |  |  |
|  | Depth: 0.0m - 1.5m | **Depth: 0.0m - 1.5m** |  | 2026-02-01 | 2026-06-24 |  |  |  |  |  |  |  |  |  |  |  |  |  |  |  |  |  |
| B3.33 14 13.01.011 |  | Excavation | 40.33d | 2026-02-01 A | 2026-04-01 A | B5.33 31 00.02.045, B5.33 05 13.061 | 100% |  |  | Labor [28.35 h]; Foreman [14.17 h]; Operator [28.35 h]; Surveyor [14.17 h]; Surveyor Helper [14.17 h]; Excavator (With Bucket) [16 h]; Water Tanker [16 h]; Dump Truck [16 h]; Plate Compactor [16 h]; Depth: 0.0m - 1.5m [155.75] | 22,426.31 | 22,426.31 | 0.00449622803237392 | Cons. | Z1 | Potable | Cons | CS.UNSC | HDPEs | SUB.C | RD 01 | Pot |
| B3.33 14 13.01.012 |  | Sand Bedding | 30.37d | 2026-02-14 A | 2026-04-02 A | B3.33 14 13.01.011 | 100% |  |  | Labor [28.35 h]; Foreman [14.17 h]; Operator [56.7 h]; Surveyor [14.17 h]; Surveyor Helper [14.17 h]; Loader [16 h]; Water Tanker [16 h]; Dump Truck [16 h]; Plate Compactor [16 h]; Depth: 0.0m - 1.5m [38.94] | 5,607.6 | 5,607.6 | 0.00112426239033505 | Cons. | Z1 | Potable | Cons | CS.UNSC | HDPEs | SUB.C | RD 01 | Pot |
| B3.33 14 13.01.013 |  | Pipe Laying | 30.62d | 2026-02-16 A | 2026-04-05 A | B3.33 14 13.01.012 | 100% |  |  | Labor [28.35 h]; Foreman [14.17 h]; Plumber Helper [14.17 h]; Plumber [14.17 h]; Operator [14.17 h]; Surveyor [14.17 h]; Surveyor Helper [14.17 h]; Mobile Crane [16 h]; Depth: 0.0m - 1.5m [350.44] | 50,460.23 | 50,460.23 | 0.0101167184550828 | Cons. | Z1 | Potable | Cons | CS.UNSC | HDPEs | SUB.C | RD 01 | Pot |
| B3.33 14 13.01.014 |  | Embedment & Test | 33.76d | 2026-04-12 A | 2026-05-20 A | B3.33 14 13.01.013, B3.33 14 19.01.104 | 100% |  |  | Labor [56.7 h]; Foreman [28.35 h]; Plumber Helper [28.35 h]; Plumber [28.35 h]; Operator [56.7 h]; Surveyor [28.35 h]; Surveyor Helper [28.35 h]; Loader [32 h]; Water Tanker [32 h]; Dump Truck [32 h]; Plate Compactor [32 h]; Roller Compactor [32 h]; Depth: 0.0m - 1.5m [155.75] | 22,426.31 | 22,426.31 | 0.00449622803237392 | Cons. | Z1 | Potable | Cons | CS.UNSC | HDPEs | SUB.C | RD 01 | Pot |
| B3.33 14 13.01.015 |  | Backfilling & Warrning Tape | 49.39d | 2026-04-23 A | 2026-06-24 A | B3.33 14 13.01.014, B3.33 14 13.02.15, B3.33 14 19.01.104 | 100% |  |  | Labor [70.87 h]; Foreman [35.44 h]; Operator [141.75 h]; Surveyor [35.44 h]; Surveyor Helper [35.44 h]; Loader [40 h]; Water Tanker [40 h]; Dump Truck [40 h]; Plate Compactor [40 h]; Roller Compactor [40 h]; Depth: 0.0m - 1.5m [77.87] | 11,213.16 | 11,213.16 | 0.00224811401618696 | Cons. | Z1 | Potable | Cons | CS.UNSC | HDPEs | SUB.C | RD 01 | Pot |
|  | Depth: 1.51m - 2.5m | **Depth: 1.51m - 2.5m** |  | 2026-02-02 | 2026-06-28 |  |  |  |  |  |  |  |  |  |  |  |  |  |  |  |  |  |
| B3.33 14 13.01.021 |  | Excavation | 49.83d | 2026-02-02 A | 2026-04-14 A | B3.33 14 13.01.011 | 100% |  |  | Labor [28.35 h]; Foreman [14.17 h]; Operator [28.35 h]; Surveyor [14.17 h]; Surveyor Helper [14.17 h]; Excavator (With Bucket) [16 h]; Water Tanker [16 h]; Dump Truck [16 h]; Plate Compactor [16 h]; Depth: 1.51m - 2.5m |  |  | 0.000145557831170628 | Cons. | Z1 | Potable | Cons | CS.UNSC | HDPEs | SUB.C | RD 01 | Pot |
| B3.33 14 13.01.022 |  | Sand Bedding | 35.99d | 2026-02-19 A | 2026-04-15 A | B3.33 14 13.01.021 | 100% |  |  | Labor [28.35 h]; Foreman [14.17 h]; Operator [56.7 h]; Surveyor [14.17 h]; Surveyor Helper [14.17 h]; Loader [16 h]; Water Tanker [16 h]; Dump Truck [16 h]; Plate Compactor [16 h]; Depth: 1.51m - 2.5m |  |  | 3.61452332437126E-005 | Cons. | Z1 | Potable | Cons | CS.UNSC | HDPEs | SUB.C | RD 01 | Pot |
| B3.33 14 13.01.023 |  | Pipe Laying | 66.87d | 2026-02-22 A | 2026-05-23 A | B3.33 14 13.01.022 | 100% | 2026-02-23 | 2026-05-23 | Labor [28.35 h]; Foreman [14.17 h]; Plumber Helper [14.17 h]; Plumber [14.17 h]; Operator [14.17 h]; Surveyor [14.17 h]; Surveyor Helper [14.17 h]; Mobile Crane [16 h]; Depth: 1.51m - 2.5m |  |  | 0.000327260895584966 | Cons. | Z1 | Potable | Cons | CS.UNSC | HDPEs | SUB.C | RD 01 | Pot |
| B3.33 14 13.01.024 |  | Embedment & Test | 60.49d | 2026-03-06 A | 2026-05-24 A | B3.33 14 13.01.023, B3.33 14 19.01.104 | 100% | 2026-03-07 | 2026-05-24 | Labor [56.7 h]; Foreman [28.35 h]; Plumber Helper [28.35 h]; Plumber [28.35 h]; Operator [56.7 h]; Surveyor [28.35 h]; Surveyor Helper [28.35 h]; Loader [32 h]; Water Tanker [32 h]; Dump Truck [32 h]; Plate Compactor [32 h]; Roller Compactor [32 h]; Depth: 1.51m - 2.5m |  |  | 0.000145557831170628 | Cons. | Z1 | Potable | Cons | CS.UNSC | HDPEs | SUB.C | RD 01 | Pot |
| B3.33 14 13.01.025 |  | Backfilling & Warrning Tape | 83.42d | 2026-03-11 A | 2026-06-28 A | B3.33 14 13.01.024 | 100% |  |  | Labor [70.87 h]; Foreman [35.44 h]; Operator [141.75 h]; Surveyor [35.44 h]; Surveyor Helper [35.44 h]; Loader [40 h]; Water Tanker [40 h]; Dump Truck [40 h]; Plate Compactor [40 h]; Roller Compactor [40 h]; Depth: 1.51m - 2.5m |  |  | 7.27789155853129E-005 | Cons. | Z1 | Potable | Cons | CS.UNSC | HDPEs | SUB.C | RD 01 | Pot |
|  | Valves & Chambers | **Valves & Chambers** |  | 2026-02-25 | 2026-10-10 |  |  |  |  |  |  |  |  |  |  |  |  |  |  |  |  |  |
|  | GV | **Gate Valves** |  | 2026-02-25 | 2026-10-06 |  |  |  |  |  |  |  |  |  |  |  |  |  |  |  |  |  |
|  | 1 | **Gate valves dia (110) mm** |  | 2026-02-25 | 2026-10-06 |  |  |  |  |  |  |  |  |  |  |  |  |  |  |  |  |  |
| B3.33 14 19.01.104 |  | Burried Isolation Valve Installation | 24.25d | 2026-02-25 A | 2026-04-05 A | B3.33 14 13.01.023, B3.33 14 13.01.013 | 100% |  |  | Labor [28.35 h]; Plumber Helper [14.17 h]; Plumber [14.17 h]; Operator [28.35 h]; Boom Truck [16 h]; POT Gate V dia 110 mm [1.65] | 3,825.71 | 3,825.71 | 0.000737657950376926 | Cons. | Z1 | Potable | Cons | CS.UNSC | Val&Chs | SUB.C | RD 01 | Pot |
| B3.33 14 19.01.105 |  | Spindle & Surface Box | 3d | 2026-10-05 A | 2026-10-06 A | B3.33 14 19.01.104, B3.33 14 13.01.014 | 100% | 2026-10-14 | 2026-10-17 | Labor [31.18 h]; Foreman [15.59 h]; Plumber Helper [15.59 h]; Plumber [15.59 h]; Operator [31.18 h]; JCB [16 h]; POT Gate V dia 110 mm [1.1] | 2,550.47 | 2,550.47 | 0.000491771966917951 | Cons. | Z1 | Potable | Cons | CS.UNSC | Val&Chs | SUB.C | RD 01 | Pot |

| ID | WBS | Activity | Duration | Start | Finish | Predecessors | Complete | Planned start | Planned finish | Resources | Cost | Actual cost | Weight % | DMM2 Weekly Progress | DMM2 Zones | Networks & Stations | DMM2 Phases | UNASCO | Networks Components | Subcontractors works | Dmm2 Roads | Yellow Sheet |
| --- | --- | --- | --- | --- | --- | --- | --- | --- | --- | --- | --- | --- | --- | --- | --- | --- | --- | --- | --- | --- | --- | --- |
|  | 2 | **Air Valves** |  | 2026-06-11 | 2026-10-10 |  |  |  |  |  |  |  |  |  |  |  |  |  |  |  |  |  |
|  | 4 | **Air valves on less than 315 mm. (In Chamber)** |  | 2026-06-11 | 2026-10-10 |  |  |  |  |  |  |  |  |  |  |  |  |  |  |  |  |  |
| B3.33 05 63.02.011 |  | Land Adjustment & Compaction | 2d | 2026-06-11 A | 2026-06-14 A | B3.33 14 13.01.024 | 100% |  |  | Labor [28.35 h]; Foreman [14.17 h]; Operator [56.7 h]; Surveyor [14.17 h]; Surveyor Helper [14.17 h]; Excavator (With Bucket) [16 h]; Water Tanker [16 h]; Dump Truck [16 h]; Plate Compactor [16 h]; POT Air valve Dia. 50 mm on pipes with Dia. less than 315 mm [0.24]; Air valve chamber; on less than 315 mm Dia. pipeline [0.18] | 4,549.72 | 4,549.72 | 0.000888448059942745 | Cons. | Z1 | Potable | Cons | CS.UNSC | Val&Chs | SUB.C | RD 01 | Pot |
| B3.33 05 63.02.012 |  | Foundations | 1d | 2026-06-14 A | 2026-06-15 A | B3.33 05 63.02.011 | 100% |  |  | Labor [42.52 h]; Foreman [21.26 h]; Laboratory Officer [21.26 h]; Carpenter [21.26 h]; Steelfixer [21.26 h]; Mason [21.26 h]; POT Air valve Dia. 50 mm on pipes with Dia. less than 315 mm [0.06]; Air valve chamber; on less than 315 mm Dia. pipeline [0.24] | 5,389.08 | 5,389.08 | 0.00105235404675599 | Cons. | Z1 | Potable | Cons | CS.UNSC | Val&Chs | SUB.C | RD 01 | Pot |
| B3.33 05 63.02.013 |  | Chambers Walls Conc Cast In Situ | 1d | 2026-06-15 A | 2026-06-15 A | B3.33 05 63.02.012 | 100% |  |  | Labor [42.52 h]; Foreman [21.26 h]; Laboratory Officer [21.26 h]; Carpenter [21.26 h]; Steelfixer [21.26 h]; Mason [21.26 h]; POT Air valve Dia. 50 mm on pipes with Dia. less than 315 mm [0.52]; Air valve chamber; on less than 315 mm Dia. pipeline [0.24] | 6,600.26 | 6,600.26 | 0.00128886622145969 | Cons. | Z1 | Potable | Cons | CS.UNSC | Val&Chs | SUB.C | RD 01 | Pot |
| B3.33 05 63.02.014 |  | Chamber Curing, Finishing & Steel Cover (50.00% Completed) | 79d | 2026-06-16 A | 2026-09-15 A | B3.33 05 63.02.013 | 100% |  |  | Labor [31.18 h]; Mason [15.59 h]; POT Air valve Dia. 50 mm on pipes with Dia. less than 315 mm [0.12]; Air valve chamber; on less than 315 mm Dia. pipeline [0.09] | 2,274.86 | 2,274.86 | 0.000888448059942745 | Cons. | Z1 | Potable | Cons | CS.UNSC | Val&Chs | SUB.C | RD 01 | Pot |
| B3.33 05 63.02.014_R |  | Chamber Curing, Finishing & Steel Cover(Rem) | 3d | 2026-10-07 A | 2026-10-10 A | B3.33 05 63.02.013, B3.33 05 63.02.014 | 100% |  |  | Labor [31.18 h]; Mason [15.59 h]; POT Air valve Dia. 50 mm on pipes with Dia. less than 315 mm [0.12]; Air valve chamber; on less than 315 mm Dia. pipeline [0.09] | 2,274.86 | 2,274.86 | 0.000888448059942745 | Cons. | Z1 | Potable | Cons | CS.UNSC | Val&Chs | SUB.C | RD 01 | Pot |
| B3.33 05 63.02.015 |  | Valve & Fitting Installation | 5d | 2026-10-08 A | 2026-10-10 A | B3.33 05 63.02.014_R | 100% | 2026-10-15 | 2026-10-21 | Labor [62.37 h]; Plumber Helper [31.18 h]; Plumber [31.18 h]; Operator [62.37 h]; Boom Truck [32 h]; POT Air valve Dia. 50 mm on pipes with Dia. less than 315 mm [0.12]; Air valve chamber; on less than 315 mm Dia. pipeline [0.34] | 7,834.72 | 7,834.72 | 0.00152992514844024 | Cons. | Z1 | Potable | Cons | CS.UNSC | Val&Chs | SUB.C | RD 01 | Pot |
|  | Crossing | **Plots and Buildings Crossing** |  | 2026-05-20 | 2026-05-25 |  |  |  |  |  |  |  |  |  |  |  |  |  |  |  |  |  |
| B3.33 14 13.02.13 |  | Earthwork | 3d | 2026-05-20 A | 2026-05-23 A | B3.33 14 13.01.021 | 100% |  |  | Labor [85.05 h]; Foreman [42.52 h]; Operator [85.05 h]; Surveyor [42.52 h]; Surveyor Helper [42.52 h]; Excavator (With Bucket) [48 h]; Water Tanker [48 h]; Dump Truck [48 h]; Plate Compactor [48 h]; Potable Plots and Buildings Crossing Connections Dia. 110 mm [0.6] | 268.67 | 268.67 | 0.000135073084407666 | Cons. | Z1 | Potable | Cons | CS.UNSC |  | SUB.C | RD 01 | Pot |
| B3.33 14 13.02.14 |  | Sand Bedding | 3d | 2026-05-21 A | 2026-05-24 A | B3.33 14 13.02.13 | 100% |  |  | Labor [28.35 h]; Foreman [14.17 h]; Operator [56.7 h]; Surveyor [14.17 h]; Surveyor Helper [14.17 h]; Loader [16 h]; Water Tanker [16 h]; Dump Truck [16 h]; Plate Compactor [16 h]; Potable Plots and Buildings Crossing Connections Dia. 110 mm [0.6] | 268.67 | 268.67 | 0.000135073084407666 | Cons. | Z1 | Potable | Cons | CS.UNSC |  | SUB.C | RD 01 | Pot |
| B3.33 14 13.02.15 |  | Tee, Pipe (Crossing) Installation & Backfilling | 2d | 2026-05-24 A | 2026-05-25 A | B3.33 14 13.02.14 | 100% |  |  | Labor [85.05 h]; Foreman [42.52 h]; Plumber Helper [42.52 h]; Plumber [42.52 h]; Operator [85.05 h]; Surveyor [42.52 h]; Surveyor Helper [42.52 h]; Mobile Crane [48 h]; Potable Plots and Buildings Crossing Connections Dia. 110 mm [1.8] | 806.01 | 806.01 | 0.000405219253223001 | Cons. | Z1 | Potable | Cons | CS.UNSC |  | SUB.C | RD 01 | Pot |
|  | Fire Fighting | **Fire Fighting Network** |  | 2026-02-02 | 2026-10-12 |  |  |  |  |  |  |  |  |  |  |  |  |  |  |  |  |  |
|  | HDPE | **HDPE Pipes** |  | 2026-02-02 | 2026-09-26 |  |  |  |  |  |  |  |  |  |  |  |  |  |  |  |  |  |
|  | ?250mm | **?250mm** |  | 2026-02-02 | 2026-09-26 |  |  |  |  |  |  |  |  |  |  |  |  |  |  |  |  |  |
|  | Depth: 0.0m - 1.5m | **Depth: 0.0m - 1.5m** |  | 2026-02-02 | 2026-09-26 |  |  |  |  |  |  |  |  |  |  |  |  |  |  |  |  |  |
| B3.1. 33 14 13.011 |  | Excavation | 51.14d | 2026-02-02 A | 2026-04-15 A | B3.33 14 13.01.015, B3.33 14 13.01.025 | 100% |  |  | Labor [28.35 h]; Foreman [14.17 h]; Operator [28.35 h]; Surveyor [14.17 h]; Surveyor Helper [14.17 h]; Excavator (With Bucket) [16 h]; Water Tanker [16 h]; Dump Truck [16 h]; Plate Compactor [16 h]; Depth: 0.0m - 1.5m [131.51] | 62,927.13 | 62,927.13 | 0.0135564090273793 | Cons. | Z1 | Fire | Cons | CS.UNSC | HDPEs | SUB.C | RD 01 | Fire |
| B3.1. 33 14 13.012 |  | Sand Bedding | 50.85d | 2026-02-09 A | 2026-04-22 A | B3.1. 33 14 13.011 | 100% |  |  | Labor [28.35 h]; Foreman [14.17 h]; Operator [56.7 h]; Surveyor [14.17 h]; Surveyor Helper [14.17 h]; Loader [16 h]; Water Tanker [16 h]; Dump Truck [16 h]; Plate Compactor [16 h]; Depth: 0.0m - 1.5m [32.88] | 15,733.37 | 15,733.37 | 0.00338944352179868 | Cons. | Z1 | Fire | Cons | CS.UNSC | HDPEs | SUB.C | RD 01 | Fire |
| B3.1. 33 14 13.013 |  | Pipe Laying | 38.1d | 2026-02-11 A | 2026-04-09 A | B3.1. 33 14 13.012 | 100% |  |  | Labor [28.35 h]; Foreman [14.17 h]; Plumber Helper [14.17 h]; Plumber [14.17 h]; Operator [14.17 h]; Surveyor [14.17 h]; Surveyor Helper [14.17 h]; Mobile Crane [16 h]; Depth: 0.0m - 1.5m [295.89] | 141,587.64 | 141,587.64 | 0.0305022615765573 | Cons. | Z1 | Fire | Cons | CS.UNSC | HDPEs | SUB.C | RD 01 | Fire |
| B3.1. 33 14 13.014 |  | Embedment & Test | 4d | 2026-04-08 A | 2026-04-12 A | B3.1. 33 14 13.013, B3.33 14 19.01.120 | 100% |  |  | Labor [56.7 h]; Foreman [28.35 h]; Plumber Helper [28.35 h]; Plumber [28.35 h]; Operator [56.7 h]; Surveyor [28.35 h]; Surveyor Helper [28.35 h]; Loader [32 h]; Water Tanker [32 h]; Dump Truck [32 h]; Plate Compactor [32 h]; Roller Compactor [32 h]; Depth: 0.0m - 1.5m [131.51] | 62,927.13 | 62,927.13 | 0.0135564090273793 | Cons. | Z1 | Fire | Cons | CS.UNSC | HDPEs | SUB.C | RD 01 | Fire |
| B3.1. 33 14 13.015 |  | Backfilling & Warrning Tape (95.00% Completed) | 124d | 2026-04-20 A | 2026-09-15 A | B3.1. 33 14 13.014 | 100% |  |  | Labor [74.06 h]; Foreman [37.03 h]; Operator [148.13 h]; Surveyor [37.03 h]; Surveyor Helper [37.03 h]; Loader [38 h]; Water Tanker [38 h]; Dump Truck [38 h]; Plate Compactor [38 h]; Roller Compactor [38 h]; Depth: 0.0m - 1.5m [62.46] | 29,887.38 | 29,887.38 | 0.00677752198378195 | Cons. | Z1 | Fire | Cons | CS.UNSC | HDPEs | SUB.C | RD 01 | Fire |
| B3.1. 33 14 13.015_R |  | Backfilling & Warrning Tape(Rem) | 4d | 2026-09-22 A | 2026-09-26 A | B3.1. 33 14 13.014, B3.1. 33 14 13.015 | 100% | 2026-09-16 | 2026-09-20 | Labor [3.9 h]; Foreman [1.95 h]; Operator [7.8 h]; Surveyor [1.95 h]; Surveyor Helper [1.95 h]; Loader [2 h]; Water Tanker [2 h]; Dump Truck [2 h]; Plate Compactor [2 h]; Roller Compactor [2 h]; Depth: 0.0m - 1.5m [3.29] | 1,573.02 | 1,573.02 | 0.00677752198378195 | Cons. | Z1 | Fire | Cons | CS.UNSC | HDPEs | SUB.C | RD 01 | Fire |
|  | Depth: 1.51m - 2.5m | **Depth: 1.51m - 2.5m** |  | 2026-02-02 | 2026-09-26 |  |  |  |  |  |  |  |  |  |  |  |  |  |  |  |  |  |
| B3.1. 33 14 13.021 |  | Excavation | 38.55d | 2026-02-02 A | 2026-04-01 A | B3.1. 33 14 13.011 | 100% |  |  | Labor [28.35 h]; Foreman [14.17 h]; Operator [28.35 h]; Surveyor [14.17 h]; Surveyor Helper [14.17 h]; Excavator (With Bucket) [16 h]; Water Tanker [16 h]; Dump Truck [16 h]; Plate Compactor [16 h]; Depth: 1.51m - 2.5m [8.22] | 4,294.65 | 4,294.65 | 0.000399426118713958 | Cons. | Z1 | Fire | Cons | CS.UNSC | HDPEs | SUB.C | RD 01 | Fire |
| B3.1. 33 14 13.022 |  | Sand Bedding | 34.05d | 2026-02-10 A | 2026-04-04 A | B3.1. 33 14 13.021 | 100% |  |  | Labor [28.35 h]; Foreman [14.17 h]; Operator [56.7 h]; Surveyor [14.17 h]; Surveyor Helper [14.17 h]; Loader [16 h]; Water Tanker [16 h]; Dump Truck [16 h]; Plate Compactor [16 h]; Depth: 1.51m - 2.5m [2.06] | 1,073.66 | 1,073.66 | 9.98565296784896E-005 | Cons. | Z1 | Fire | Cons | CS.UNSC | HDPEs | SUB.C | RD 01 | Fire |
| B3.1. 33 14 13.023 |  | Pipe Laying | 33.3d | 2026-02-12 A | 2026-04-05 A | B3.1. 33 14 13.022 | 100% |  |  | Labor [28.35 h]; Foreman [14.17 h]; Plumber Helper [14.17 h]; Plumber [14.17 h]; Operator [14.17 h]; Surveyor [14.17 h]; Surveyor Helper [14.17 h]; Mobile Crane [16 h]; Depth: 1.51m - 2.5m [18.5] | 9,662.95 | 9,662.95 | 0.00089870876710641 | Cons. | Z1 | Fire | Cons | CS.UNSC | HDPEs | SUB.C | RD 01 | Fire |
| B3.1. 33 14 13.024 |  | Embedment & Test | 44.36d | 2026-04-29 A | 2026-06-24 A | B3.1. 33 14 13.023, B3.33 14 19.01.120 | 100% |  |  | Labor [56.7 h]; Foreman [28.35 h]; Plumber Helper [28.35 h]; Plumber [28.35 h]; Operator [56.7 h]; Surveyor [28.35 h]; Surveyor Helper [28.35 h]; Loader [32 h]; Water Tanker [32 h]; Dump Truck [32 h]; Plate Compactor [32 h]; Roller Compactor [32 h]; Depth: 1.51m - 2.5m [8.22] | 4,294.65 | 4,294.65 | 0.000399426118713958 | Cons. | Z1 | Fire | Cons | CS.UNSC | HDPEs | SUB.C | RD 01 | Fire |
| B3.1. 33 14 13.025 |  | Backfilling & Warrning Tape (95.00% Completed) | 112d | 2026-05-04 A | 2026-09-15 A | B3.1. 33 14 13.024, B3.1. 33 14 13.014 | 100% |  |  | Labor [74.06 h]; Foreman [37.03 h]; Operator [148.13 h]; Surveyor [37.03 h]; Surveyor Helper [37.03 h]; Loader [38 h]; Water Tanker [38 h]; Dump Truck [38 h]; Plate Compactor [38 h]; Roller Compactor [38 h]; Depth: 1.51m - 2.5m [3.9] | 2,039.96 | 2,039.96 | 0.00019971305935698 | Cons. | Z1 | Fire | Cons | CS.UNSC | HDPEs | SUB.C | RD 01 | Fire |
| B3.1. 33 14 13.025_R |  | Backfilling & Warrning Tape(Rem) | 4d | 2026-09-21 A | 2026-09-26 A | B3.1. 33 14 13.024, B3.1. 33 14 13.014, B3.1. 33 14 13.025, B3.1. 33 14 13.015_R | 100% |  |  | Labor [3.9 h]; Foreman [1.95 h]; Operator [7.8 h]; Surveyor [1.95 h]; Surveyor Helper [1.95 h]; Loader [2 h]; Water Tanker [2 h]; Dump Truck [2 h]; Plate Compactor [2 h]; Roller Compactor [2 h]; Depth: 1.51m - 2.5m [0.21] | 107.37 | 107.37 | 0.00019971305935698 | Cons. | Z1 | Fire | Cons | CS.UNSC | HDPEs | SUB.C | RD 01 | Fire |

| ID | WBS | Activity | Duration | Start | Finish | Predecessors | Complete | Planned start | Planned finish | Resources | Cost | Actual cost | Weight % | DMM2 Weekly Progress | DMM2 Zones | Networks & Stations | DMM2 Phases | UNASCO | Networks Components | Subcontractors works | Dmm2 Roads | Yellow Sheet |
| --- | --- | --- | --- | --- | --- | --- | --- | --- | --- | --- | --- | --- | --- | --- | --- | --- | --- | --- | --- | --- | --- | --- |
|  | Valves & Chambers | **Valves & Chambers** |  | 2026-03-05 | 2026-10-12 |  |  |  |  |  |  |  |  |  |  |  |  |  |  |  |  |  |
|  | GV | **Gate Valves** |  | 2026-03-05 | 2026-10-05 |  |  |  |  |  |  |  |  |  |  |  |  |  |  |  |  |  |
|  | 1 | **Gate valves dia (250) mm** |  | 2026-03-05 | 2026-10-05 |  |  |  |  |  |  |  |  |  |  |  |  |  |  |  |  |  |
| B3.33 14 19.01.120 |  | Burried Isolation Valve Installation | 15.29d | 2026-03-05 A | 2026-03-31 A | B3.1. 33 14 13.023, B3.1. 33 14 13.013 | 100% |  |  | Labor [28.35 h]; Plumber Helper [14.17 h]; Plumber [14.17 h]; Operator [28.35 h]; Boom Truck [16 h]; FF Gate V dia 250 mm [1.88] | 7,525.67 | 7,525.67 | 0.00144335522534034 | Cons. | Z1 | Fire | Cons | CS.UNSC | Val&Chs | SUB.C | RD 01 | Fire |
| B3.33 14 19.01.121 |  | Spindle & Surface Box | 4d | 2026-10-04 A | 2026-10-05 A | B3.33 14 19.01.120, B3.33 14 19.01.133, B3.33 14 19.01.127, B3.1. 33 14 13.025_R | 100% | 2026-10-29 | 2026-11-02 | Labor [31.18 h]; Foreman [15.59 h]; Plumber Helper [15.59 h]; Plumber [15.59 h]; Operator [31.18 h]; JCB [16 h]; FF Gate V dia 250 mm [1.25] | 5,017.11 | 5,017.11 | 0.000962236816893557 | Cons. | Z1 | Fire | Cons | CS.UNSC | Val&Chs | SUB.C | RD 01 | Fire |
|  | 2 | **Air Valves** |  | 2026-06-10 | 2026-10-12 |  |  |  |  |  |  |  |  |  |  |  |  |  |  |  |  |  |
|  | 4 | **Air valves on less than 315 mm. (In Chamber)** |  | 2026-06-10 | 2026-10-12 |  |  |  |  |  |  |  |  |  |  |  |  |  |  |  |  |  |
| B3.33 05 63.02.42 |  | Land Adjustment & Compaction | 1.33d | 2026-06-10 A | 2026-06-11 A | B3.1. 33 14 13.021 | 100% |  |  | Labor [28.35 h]; Foreman [14.17 h]; Operator [56.7 h]; Surveyor [14.17 h]; Surveyor Helper [14.17 h]; Excavator (With Bucket) [16 h]; Water Tanker [16 h]; Dump Truck [16 h]; Plate Compactor [16 h]; FF Air valve Dia. 50 mm on pipes with Dia. less than 315 mm [0.18]; FF Air valve chamber; on less than 315 mm Dia. pipeline [0.18] | 4,485.6 | 4,485.6 | 0.000842899444995834 | Cons. | Z1 | Fire | Cons | CS.UNSC | Val&Chs | SUB.C | RD 01 | Fire |
| B3.33 05 63.02.40 |  | Foundations | 2d | 2026-06-13 A | 2026-06-14 A | B3.33 05 63.02.42 | 100% |  |  | Labor [42.52 h]; Foreman [21.26 h]; Laboratory Officer [21.26 h]; Carpenter [21.26 h]; Steelfixer [21.26 h]; Mason [21.26 h]; FF Air valve Dia. 50 mm on pipes with Dia. less than 315 mm [0.18]; FF Air valve chamber; on less than 315 mm Dia. pipeline [0.24] | 5,821.24 | 5,821.24 | 0.00109388285056526 | Cons. | Z1 | Fire | Cons | CS.UNSC | Val&Chs | SUB.C | RD 01 | Fire |
| B3.33 05 63.02.43 |  | Chambers Walls Conc Cast In Situ | 1d | 2026-06-15 A | 2026-06-15 A | B3.33 05 63.02.40 | 100% |  |  | Labor [42.52 h]; Foreman [21.26 h]; Laboratory Officer [21.26 h]; Carpenter [21.26 h]; Steelfixer [21.26 h]; Mason [21.26 h]; FF Air valve Dia. 50 mm on pipes with Dia. less than 315 mm [0.24]; FF Air valve chamber; on less than 315 mm Dia. pipeline [0.24] | 5,980.8 | 5,980.8 | 0.00112386592666111 | Cons. | Z1 | Fire | Cons | CS.UNSC | Val&Chs | SUB.C | RD 01 | Fire |
| B3.33 05 63.02.41 |  | Chamber Curing, Finishing & Steel Cover (50.00% Completed) | 79d | 2026-06-16 A | 2026-09-15 A | B3.33 05 63.02.43 | 100% |  |  | Labor [31.18 h]; Mason [15.59 h]; FF Air valve Dia. 50 mm on pipes with Dia. less than 315 mm [0.12]; FF Air valve chamber; on less than 315 mm Dia. pipeline [0.09] | 2,322.58 | 2,322.58 | 0.000872882521091683 | Cons. | Z1 | Fire | Cons | CS.UNSC | Val&Chs | SUB.C | RD 01 | Fire |
| B3.33 05 63.02.41_R |  | Chamber Curing, Finishing & Steel Cover(Rem) | 4d | 2026-10-07 A | 2026-10-08 A | B3.33 05 63.02.43, B3.33 05 63.02.41 | 100% | 2026-10-07 | 2026-10-11 | Labor [31.18 h]; Mason [15.59 h]; FF Air valve Dia. 50 mm on pipes with Dia. less than 315 mm [0.12]; FF Air valve chamber; on less than 315 mm Dia. pipeline [0.09] | 2,322.58 | 2,322.58 | 0.000872882521091683 | Cons. | Z1 | Fire | Cons | CS.UNSC | Val&Chs | SUB.C | RD 01 | Fire |
| B3.33 05 63.02.44 |  | Valve & Fitting Installation | 6d | 2026-10-10 A | 2026-10-12 A | B3.33 05 63.02.41_R, B3.33 05 63.01.31 | 100% | 2026-10-17 | 2026-10-22 | Labor [62.37 h]; Plumber Helper [31.18 h]; Plumber [31.18 h]; Operator [62.37 h]; Boom Truck [32 h]; FF Air valve Dia. 50 mm on pipes with Dia. less than 315 mm [0.38]; FF Air valve chamber; on less than 315 mm Dia. pipeline [0.38] | 9,344.99 | 9,344.99 | 0.001756040510408 | Cons. | Z1 | Fire | Cons | CS.UNSC | Val&Chs | SUB.C | RD 01 | Fire |
|  | Washout Valves | **Washout Valves** |  | 2026-05-02 | 2026-05-19 |  |  |  |  |  |  |  |  |  |  |  |  |  |  |  |  |  |
|  | 4 | **Washout valves on 110-400 mm. (In Chamber)** |  | 2026-05-02 | 2026-05-19 |  |  |  |  |  |  |  |  |  |  |  |  |  |  |  |  |  |
| B3.33 05 63.01.32 |  | Land Adjustment & Compaction | 6d | 2026-05-02 A | 2026-05-07 A | B3.33 05 63.02.42 | 100% |  |  | Labor [28.35 h]; Foreman [14.17 h]; Operator [56.7 h]; Surveyor [14.17 h]; Surveyor Helper [14.17 h]; Excavator (With Bucket) [16 h]; Water Tanker [16 h]; Dump Truck [16 h]; Plate Compactor [16 h]; FF Wash out valve Dia. 100 mm on pipes with Dia. 110-400 mm [0.19]; FF Wash out valve chamber; on 110-400 mm Dia. pipeline [0.21] | 7,932 | 7,932 | 0.00140430274510935 | Cons. | Z1 | Fire | Cons | CS.UNSC | Val&Chs | SUB.C | RD 01 | Fire |
| B3.33 05 63.01.30 |  | Foundations | 3d | 2026-05-09 A | 2026-05-11 A | B3.33 05 63.01.32 | 100% |  |  | Labor [42.52 h]; Foreman [21.26 h]; Laboratory Officer [21.26 h]; Carpenter [21.26 h]; Steelfixer [21.26 h]; Mason [21.26 h]; FF Wash out valve Dia. 100 mm on pipes with Dia. 110-400 mm [0.19]; FF Wash out valve chamber; on 110-400 mm Dia. pipeline [0.26] | 9,649.37 | 9,649.37 | 0.00179441315636236 | Cons. | Z1 | Fire | Cons | CS.UNSC | Val&Chs | SUB.C | RD 01 | Fire |
| B3.33 05 63.01.33 |  | Chambers Walls Conc Cast In Situ | 2d | 2026-05-14 A | 2026-05-16 A | B3.33 05 63.01.30 | 100% |  |  | Labor [42.52 h]; Foreman [21.26 h]; Laboratory Officer [21.26 h]; Carpenter [21.26 h]; Steelfixer [21.26 h]; Mason [21.26 h]; FF Wash out valve Dia. 100 mm on pipes with Dia. 110-400 mm [0.25]; FF Wash out valve chamber; on 110-400 mm Dia. pipeline [0.26] | 9,870.62 | 9,870.62 | 0.00183639589745068 | Cons. | Z1 | Fire | Cons | CS.UNSC | Val&Chs | SUB.C | RD 01 | Fire |
| B3.33 05 63.01.31 |  | Chamber Curing, Finishing & Steel Cover | 2d | 2026-05-17 A | 2026-05-18 A | B3.33 05 63.01.33 | 100% |  |  | Labor [56.7 h]; Mason [28.35 h]; FF Wash out valve Dia. 100 mm on pipes with Dia. 110-400 mm [0.25]; FF Wash out valve chamber; on 110-400 mm Dia. pipeline [0.19] | 7,621.88 | 7,621.88 | 0.00144628548619767 | Cons. | Z1 | Fire | Cons | CS.UNSC | Val&Chs | SUB.C | RD 01 | Fire |
| B3.33 05 63.01.34 |  | Valve & Fitting Installation | 2d | 2026-05-18 A | 2026-05-19 A | B3.33 05 63.01.31 | 100% |  |  | Labor [56.7 h]; Plumber Helper [28.35 h]; Plumber [28.35 h]; Operator [56.7 h]; Boom Truck [32 h]; FF Wash out valve Dia. 100 mm on pipes with Dia. 110-400 mm [0.39]; FF Wash out valve chamber; on 110-400 mm Dia. pipeline [0.39] | 14,801.26 | 14,801.26 | 0.00280860549021868 | Cons. | Z1 | Fire | Cons | CS.UNSC | Val&Chs | SUB.C | RD 01 | Fire |
|  | 3 | **Fire Hydrant** |  | 2026-04-20 | 2026-05-16 |  |  |  |  |  |  |  |  |  |  |  |  |  |  |  |  |  |
| B3.33 14 19.01.fh2 |  | Riser Pipe & Flanged Fittings Installation | 10.54d | 2026-04-20 A | 2026-05-02 A | B3.1. 33 14 13.023, B3.1. 33 14 13.013 | 100% |  |  | Labor [28.35 h]; Plumber Helper [14.17 h]; Welder [14.17 h]; Plumber [14.17 h]; Surveyor [14.17 h]; Surveyor Helper [14.17 h]; Welding Machine [16 h]; 3-outlet fire hydrant (2 x 2.5 inch and 1 x 4.5 inch) in the form of a separate dry vacuum cylinder [1.49] | 16,415.29 | 16,415.29 | 0.00314407764631429 | Cons. | Z1 | Fire | Cons | CS.UNSC | FH | SUB.C | RD 01 | Fire |
| B3.33 14 19.01.fh3 |  | Firehydrant Fixing/Installation | 15.31d | 2026-04-21 A | 2026-05-09 A | B3.33 14 19.01.fh2 | 100% |  |  | Labor [42.52 h]; Foreman [21.26 h]; Plumber Helper [21.26 h]; Plumber [21.26 h]; Operator [42.52 h]; Surveyor [21.26 h]; Surveyor Helper [21.26 h]; JCB [24 h]; 3-outlet fire hydrant (2 x 2.5 inch and 1 x 4.5 inch) in the form of a separate dry vacuum cylinder [4.47] | 49,245.86 | 49,245.86 | 0.0094322329389428 | Cons. | Z1 | Fire | Cons | CS.UNSC | FH | SUB.C | RD 01 | Fire |
| B3.33 14 19.01.fh5 |  | Backfilling & Compaction | 16.85d | 2026-04-27 A | 2026-05-16 A | B3.33 14 19.01.fh3, B3.1. 33 14 13-01106 | 100% |  |  | Labor [70.87 h]; Foreman [35.44 h]; Operator [70.87 h]; Surveyor [35.44 h]; Surveyor Helper [35.44 h]; Loader [40 h]; Water Tanker [40 h]; Dump Truck [40 h]; Plate Compactor [40 h]; 3-outlet fire hydrant (2 x 2.5 inch and 1 x 4.5 inch) in the form of a separate dry vacuum cylinder [1.49] | 16,415.29 | 16,415.29 | 0.00314407764631429 | Cons. | Z1 | Fire | Cons | CS.UNSC | FH | SUB.C | RD 01 | Fire |

| ID | WBS | Activity | Duration | Start | Finish | Predecessors | Complete | Planned start | Planned finish | Total float | Free float | Resources | Cost | Actual cost | Weight % | DMM2 Weekly Progress | DMM2 Zones | Networks & Stations | DMM2 Phases | UNASCO | Networks Components | Subcontractors works | Dmm2 Roads | Yellow Sheet |
| --- | --- | --- | --- | --- | --- | --- | --- | --- | --- | --- | --- | --- | --- | --- | --- | --- | --- | --- | --- | --- | --- | --- | --- | --- |
|  | TSE | **TSE Network** |  | 2026-03-02 | 2026-12-10 |  |  |  |  |  |  |  |  |  |  |  |  |  |  |  |  |  |  |  |
|  | HDPE | **HDPE Pipes** |  | 2026-03-02 | 2026-05-24 |  |  |  |  |  |  |  |  |  |  |  |  |  |  |  |  |  |  |  |
|  | ?110mm | **?110mm** |  | 2026-03-02 | 2026-05-20 |  |  |  |  |  |  |  |  |  |  |  |  |  |  |  |  |  |  |  |
|  | Depth: 0.0m - 1.5m | **Depth: 0.0m - 1.5m** |  | 2026-03-02 | 2026-05-20 |  |  |  |  |  |  |  |  |  |  |  |  |  |  |  |  |  |  |  |
| B4.33 14 13.071 |  | Excavation | 8d | 2026-03-02 A | 2026-03-13 A | B3.33 14 13.02.13, B3.1. 33 14 13.021 | 100% | 2026-03-02 | 2026-03-14 |  |  | Labor [28.35 h]; Foreman [14.17 h]; Operator [28.35 h]; Surveyor [14.17 h]; Surveyor Helper [14.17 h]; Excavator (With Bucket) [16 h]; Water Tanker [16 h]; Dump Truck [16 h]; Plate Compactor [16 h]; Dia. 110mm 0.0m - 1.5m [83.33] | 11,999.34 | 11,999.34 | 0.00275210673788439 | Cons. | Z1 | TSE | Cons | CS.UNSC | HDPEs | SUB.C | RD 01 | TSE |
| B4.33 14 13.072 |  | Sand Bedding | 10.5d | 2026-03-04 A | 2026-03-20 A | B4.33 14 13.071 | 100% | 2026-03-04 | 2026-03-24 |  |  | Labor [28.35 h]; Foreman [14.17 h]; Operator [56.7 h]; Surveyor [14.17 h]; Surveyor Helper [14.17 h]; Loader [16 h]; Water Tanker [16 h]; Dump Truck [16 h]; Plate Compactor [16 h]; Dia. 110mm 0.0m - 1.5m [20.83] | 2,999.84 | 2,999.84 | 0.000688026684471096 | Cons. | Z1 | TSE | Cons | CS.UNSC | HDPEs | SUB.C | RD 01 | TSE |
| B4.33 14 13.073 |  | Pipe Laying | 13.16d | 2026-03-07 A | 2026-03-30 A | B4.33 14 13.072 | 100% |  |  |  |  | Labor [28.35 h]; Foreman [14.17 h]; Plumber Helper [14.17 h]; Plumber [14.17 h]; Operator [14.17 h]; Surveyor [14.17 h]; Surveyor Helper [14.17 h]; Mobile Crane [16 h]; Dia. 110mm 0.0m - 1.5m [187.5] | 26,998.52 | 26,998.52 | 0.00619224016023984 | Cons. | Z1 | TSE | Cons | CS.UNSC | HDPEs | SUB.C | RD 01 | TSE |
| B4.33 14 13.074 |  | Embedment & Test | 10.97d | 2026-03-26 A | 2026-04-08 A | B4.33 14 13.073, B3.33 14 19.01.136 | 100% |  |  |  |  | Labor [56.7 h]; Foreman [28.35 h]; Plumber Helper [28.35 h]; Plumber [28.35 h]; Operator [56.7 h]; Surveyor [28.35 h]; Surveyor Helper [28.35 h]; Loader [32 h]; Water Tanker [32 h]; Dump Truck [32 h]; Plate Compactor [32 h]; Roller Compactor [32 h]; Dia. 110mm 0.0m - 1.5m [83.33] | 11,999.34 | 11,999.34 | 0.00275210673788439 | Cons. | Z1 | TSE | Cons | CS.UNSC | HDPEs | SUB.C | RD 01 | TSE |
| B4.33 14 13.075 |  | Backfilling & Warrning Tape | 46.15d | 2026-03-28 A | 2026-05-20 A | B4.33 14 13.074, B3.33 14 19.01.136 | 100% |  |  |  |  | Labor [70.87 h]; Foreman [35.44 h]; Operator [141.75 h]; Surveyor [35.44 h]; Surveyor Helper [35.44 h]; Loader [40 h]; Water Tanker [40 h]; Dump Truck [40 h]; Plate Compactor [40 h]; Roller Compactor [40 h]; Dia. 110mm 0.0m - 1.5m [41.67] | 5,999.67 | 5,999.67 | 0.00137605336894219 | Cons. | Z1 | TSE | Cons | CS.UNSC | HDPEs | SUB.C | RD 01 | TSE |
|  | ?90mm | **?90mm** |  | 2026-03-07 | 2026-05-24 |  |  |  |  |  |  |  |  |  |  |  |  |  |  |  |  |  |  |  |
|  | Depth: 0.0m - 1.5m | **Depth: 0.0m - 1.5m** |  | 2026-03-07 | 2026-05-24 |  |  |  |  |  |  |  |  |  |  |  |  |  |  |  |  |  |  |  |
| B4.33 14 13.061 |  | Excavation | 10.67d | 2026-03-07 A | 2026-03-26 A | B4.33 14 13.071 | 100% |  |  |  |  | Labor [28.35 h]; Foreman [14.17 h]; Operator [28.35 h]; Surveyor [14.17 h]; Surveyor Helper [14.17 h]; Excavator (With Bucket) [16 h]; Water Tanker [16 h]; Dump Truck [16 h]; Plate Compactor [16 h]; Dia. 90mm 0.0m - 1.5m [315] | 25,997.55 | 25,997.55 | 0.00567873731768342 | Cons. | Z1 | TSE | Cons | CS.UNSC | HDPEs | SUB.C | RD 01 | TSE |
| B4.33 14 13.062 |  | Sand Bedding | 11.17d | 2026-03-09 A | 2026-03-29 A | B4.33 14 13.061 | 100% |  |  |  |  | Labor [28.35 h]; Foreman [14.17 h]; Operator [56.7 h]; Surveyor [14.17 h]; Surveyor Helper [14.17 h]; Loader [16 h]; Water Tanker [16 h]; Dump Truck [16 h]; Plate Compactor [16 h]; Dia. 90mm 0.0m - 1.5m [78.75] | 6,499.39 | 6,499.39 | 0.00141968432942085 | Cons. | Z1 | TSE | Cons | CS.UNSC | HDPEs | SUB.C | RD 01 | TSE |
| B4.33 14 13.063 |  | Pipe Laying | 11.67d | 2026-03-11 A | 2026-03-31 A | B4.33 14 13.062 | 100% |  |  |  |  | Labor [28.35 h]; Foreman [14.17 h]; Plumber Helper [14.17 h]; Plumber [14.17 h]; Operator [14.17 h]; Surveyor [14.17 h]; Surveyor Helper [14.17 h]; Mobile Crane [16 h]; Dia. 90mm 0.0m - 1.5m [708.75] | 58,494.5 | 58,494.5 | 0.0127771589647876 | Cons. | Z1 | TSE | Cons | CS.UNSC | HDPEs | SUB.C | RD 01 | TSE |
| B4.33 14 13.064 |  | Embedment & Test | 32.67d | 2026-04-15 A | 2026-05-23 A | B4.33 14 13.063, B3.33 14 19.01.136 | 100% |  |  |  |  | Labor [56.7 h]; Foreman [28.35 h]; Plumber Helper [28.35 h]; Plumber [28.35 h]; Operator [56.7 h]; Surveyor [28.35 h]; Surveyor Helper [28.35 h]; Loader [32 h]; Water Tanker [32 h]; Dump Truck [32 h]; Plate Compactor [32 h]; Roller Compactor [32 h]; Dia. 90mm 0.0m - 1.5m [315] | 25,997.55 | 25,997.55 | 0.00567873731768342 | Cons. | Z1 | TSE | Cons | CS.UNSC | HDPEs | SUB.C | RD 01 | TSE |
| B4.33 14 13.065 |  | Backfilling & Warrning Tape | 27.06d | 2026-04-22 A | 2026-05-24 A | B4.33 14 13.064 | 100% |  |  |  |  | Labor [70.87 h]; Foreman [35.44 h]; Operator [141.75 h]; Surveyor [35.44 h]; Surveyor Helper [35.44 h]; Loader [40 h]; Water Tanker [40 h]; Dump Truck [40 h]; Plate Compactor [40 h]; Roller Compactor [40 h]; Dia. 90mm 0.0m - 1.5m [157.5] | 12,998.78 | 12,998.78 | 0.0028393686588417 | Cons. | Z1 | TSE | Cons | CS.UNSC | HDPEs | SUB.C | RD 01 | TSE |
|  | Valves & Chambers | **Valves & Chambers** |  | 2026-03-09 | 2026-12-10 |  |  |  |  |  |  |  |  |  |  |  |  |  |  |  |  |  |  |  |
|  | GV | **Gate Valves** |  | 2026-03-09 | 2026-10-24 |  |  |  |  |  |  |  |  |  |  |  |  |  |  |  |  |  |  |  |
|  | 1 | **Gate valves dia (250) mm** |  | 2026-03-09 | 2026-10-24 |  |  |  |  |  |  |  |  |  |  |  |  |  |  |  |  |  |  |  |
| B3.33 14 19.01.136 |  | Burried Isolation Valve Installation | 14.4d | 2026-03-09 A | 2026-04-02 A | B4.33 14 13.063, B4.33 14 13.073 | 100% |  |  |  |  | Labor [28.35 h]; Plumber Helper [14.17 h]; Plumber [14.17 h]; Operator [28.35 h]; Boom Truck [16 h]; TSE Gate V Dia. 100 mm [5.6] | 12,973.53 | 12,973.53 | 0.00232751888367418 | Cons. | Z1 | TSE | Cons | CS.UNSC | Val&Chs | SUB.C | RD 01 | TSE |
| B3.33 14 19.01.137 |  | Spindle & Surface Box | 3d | 2026-10-21 | 2026-10-24 | B3.33 14 19.01.136, B4.33 14 13.074 |  |  |  | 57.32d | 11d | Labor [31.18 h]; Foreman [15.59 h]; Plumber Helper [15.59 h]; Plumber [15.59 h]; Operator [31.18 h]; JCB [16 h]; TSE Gate V Dia. 100 mm [2.4] | 5,565.35 |  | 0.000998452702939785 | Cons. | Z1 | TSE | Cons | CS.UNSC | Val&Chs | SUB.C | RD 01 | TSE |
|  | 2 | **Air Valves** |  | 2026-06-10 | 2026-10-26 |  |  |  |  |  |  |  |  |  |  |  |  |  |  |  |  |  |  |  |
|  | 4 | **Air valves on less than 315 mm. (In Chamber)** |  | 2026-06-10 | 2026-10-26 |  |  |  |  |  |  |  |  |  |  |  |  |  |  |  |  |  |  |  |
| B3.33 05 63.02.87 |  | Land Adjustment & Compaction | 2d | 2026-06-10 A | 2026-06-11 A | B4.33 14 13.061 | 100% |  |  |  |  | Labor [28.35 h]; Foreman [14.17 h]; Operator [56.7 h]; Surveyor [14.17 h]; Surveyor Helper [14.17 h]; Excavator (With Bucket) [16 h]; Water Tanker [16 h]; Dump Truck [16 h]; Plate Compactor [16 h]; TSE Air valve Dia. 50 mm on pipes with Dia. less than 315 mm [0.15] | 395.16 | 395.16 | 7.54399052530939E-005 | Cons. | Z1 | TSE | Cons | CS.UNSC | Val&Chs | SUB.C | RD 01 | TSE |
| B3.33 05 63.02.85 |  | Foundations | 3d | 2026-06-13 A | 2026-06-15 A | B3.33 05 63.02.87 | 100% |  |  |  |  | Labor [42.52 h]; Foreman [21.26 h]; Laboratory Officer [21.26 h]; Carpenter [21.26 h]; Steelfixer [21.26 h]; Mason [21.26 h]; TSE Air valve Dia. 50 mm on pipes with Dia. less than 315 mm [0.1] | 276.61 | 276.61 | 5.28079336771659E-005 | Cons. | Z1 | TSE | Cons | CS.UNSC | Val&Chs | SUB.C | RD 01 | TSE |
| B3.33 05 63.02.88 |  | Chambers Walls Conc Cast In Situ | 1d | 2026-06-14 A | 2026-06-14 A | B3.33 05 63.02.85 | 100% |  |  |  |  | Labor [42.52 h]; Foreman [21.26 h]; Laboratory Officer [21.26 h]; Carpenter [21.26 h]; Steelfixer [21.26 h]; Mason [21.26 h]; TSE Air valve Dia. 50 mm on pipes with Dia. less than 315 mm [0.1] | 276.61 | 276.61 | 5.28079336771659E-005 | Cons. | Z1 | TSE | Cons | CS.UNSC | Val&Chs | SUB.C | RD 01 | TSE |
| B3.33 05 63.02.86 |  | Chamber Curing, Finishing & Steel Cover (50.00% Completed) | 80d | 2026-06-15 A | 2026-09-15 A | B3.33 05 63.02.88 | 100% |  |  |  |  | Labor [31.18 h]; Mason [15.59 h]; TSE Air valve Dia. 50 mm on pipes with Dia. less than 315 mm [0.1] | 256.85 | 256.85 | 9.80718768290229E-005 | Cons. | Z1 | TSE | Cons | CS.UNSC | Val&Chs | SUB.C | RD 01 | TSE |
| B3.33 05 63.02.86_R |  | Chamber Curing, Finishing & Steel Cover(Rem) | 3d | 2026-10-07 A | 2026-10-10 A | B3.33 05 63.02.88, B3.33 05 63.02.86 | 100% |  |  |  |  | Labor [31.18 h]; Mason [15.59 h]; TSE Air valve Dia. 50 mm on pipes with Dia. less than 315 mm [0.1] | 256.85 | 256.85 | 9.80718768290229E-005 | Cons. | Z1 | TSE | Cons | CS.UNSC | Val&Chs | SUB.C | RD 01 | TSE |
| B3.33 05 63.02.89 |  | Valve & Fitting Installation | 5d | 2026-10-21 | 2026-10-26 | B3.33 05 63.02.86_R |  |  |  | 25.32d | 0d | Labor [62.37 h]; Plumber Helper [31.18 h]; Plumber [31.18 h]; Operator [62.37 h]; Boom Truck [32 h]; TSE Air valve Dia. 50 mm on pipes with Dia. less than 315 mm [0.45] | 1,185.47 |  | 0.000226319715759282 | Cons. | Z1 | TSE | Cons | CS.UNSC | Val&Chs | SUB.C | RD 01 | TSE |

| ID | WBS | Activity | Duration | Start | Finish | Predecessors | Complete | Total float | Free float | Resources | Cost | Actual cost | Weight % | DMM2 Weekly Progress | DMM2 Zones | Networks & Stations | DMM2 Phases | UNASCO | Networks Components | Subcontractors works | Dmm2 Roads | Yellow Sheet |
| --- | --- | --- | --- | --- | --- | --- | --- | --- | --- | --- | --- | --- | --- | --- | --- | --- | --- | --- | --- | --- | --- | --- |
|  | Washout Valves | **Washout Valves** |  | 2026-05-23 | 2026-12-10 |  |  |  |  |  |  |  |  |  |  |  |  |  |  |  |  |  |
|  | 4 | **Washout valves on 110-400 mm. (In Chamber)** |  | 2026-05-23 | 2026-12-10 |  |  |  |  |  |  |  |  |  |  |  |  |  |  |  |  |  |
| B3.33 05 63.01.67 |  | Land Adjustment & Compaction | 2d | 2026-05-23 A | 2026-05-24 A | B3.33 05 63.02.87, B3.33 05 63.02.87 FF | 100% |  |  | Labor [28.35 h]; Foreman [14.17 h]; Operator [56.7 h]; Surveyor [14.17 h]; Surveyor Helper [14.17 h]; Excavator (With Bucket) [16 h]; Water Tanker [16 h]; Dump Truck [16 h]; Plate Compactor [16 h]; TSE Wash out valve Dia. 100 mm on pipes with Dia. 110-400 mm [0.15] | 550.28 | 550.28 | 0.000105445392007469 | Cons. | Z1 | TSE | Cons | CS.UNSC | Val&Chs | SUB.C | RD 01 | TSE |
| B3.33 05 63.01.65 |  | Foundations (60.00% Completed) | 84d | 2026-06-10 A | 2026-09-15 A | B3.33 05 63.01.67 | 100% |  |  | Labor [28.07 h]; Foreman [14.03 h]; Laboratory Officer [14.03 h]; Carpenter [14.03 h]; Steelfixer [14.03 h]; Mason [14.03 h]; TSE Wash out valve Dia. 100 mm on pipes with Dia. 110-400 mm [0.06] | 231.12 | 231.12 | 7.38117744052285E-005 | Cons. | Z1 | TSE | Cons | CS.UNSC | Val&Chs | SUB.C | RD 01 | TSE |
| B3.33 05 63.01.68 |  | Chambers Walls Conc Cast In Situ (60.00% Completed) | 83d | 2026-06-11 A | 2026-09-15 A | B3.33 05 63.01.65 SS | 100% |  |  | Labor [28.07 h]; Foreman [14.03 h]; Laboratory Officer [14.03 h]; Carpenter [14.03 h]; Steelfixer [14.03 h]; Mason [14.03 h]; TSE Wash out valve Dia. 100 mm on pipes with Dia. 110-400 mm [0.06] | 231.12 | 231.12 | 7.38117744052285E-005 | Cons. | Z1 | TSE | Cons | CS.UNSC | Val&Chs | SUB.C | RD 01 | TSE |
| B3.33 05 63.01.66 |  | Chamber Curing, Finishing & Steel Cover (60.00% Completed) | 81d | 2026-06-14 A | 2026-09-15 A | B3.33 05 63.01.68 SS | 100% |  |  | Labor [37.42 h]; Mason [18.71 h]; TSE Wash out valve Dia. 100 mm on pipes with Dia. 110-400 mm [0.12] | 429.21 | 429.21 | 0.000137079009609711 | Cons. | Z1 | TSE | Cons | CS.UNSC | Val&Chs | SUB.C | RD 01 | TSE |
| B3.33 05 63.01.65_R |  | Foundations(Rem) | 2.2d | 2026-10-07 A | 2026-10-10 A | B3.33 05 63.01.67, B3.33 05 63.01.65 | 100% |  |  | Labor [18.71 h]; Foreman [9.36 h]; Laboratory Officer [9.36 h]; Carpenter [9.36 h]; Steelfixer [9.36 h]; Mason [9.36 h]; TSE Wash out valve Dia. 100 mm on pipes with Dia. 110-400 mm [0.04] | 154.08 | 154.08 | 7.38117744052285E-005 | Cons. | Z1 | TSE | Cons | CS.UNSC | Val&Chs | SUB.C | RD 01 | TSE |
| B3.33 05 63.01.66_R |  | Chamber Curing, Finishing & Steel Cover(Rem) | 2.6d | 2026-10-07 A | 2026-10-10 A | B3.33 05 63.01.68_R SS, B3.33 05 63.01.66 | 100% |  |  | Labor [24.95 h]; Mason [12.47 h]; TSE Wash out valve Dia. 100 mm on pipes with Dia. 110-400 mm [0.08] | 286.14 | 286.14 | 0.000137079009609711 | Cons. | Z1 | TSE | Cons | CS.UNSC | Val&Chs | SUB.C | RD 01 | TSE |
| B3.33 05 63.01.68_R |  | Chambers Walls Conc Cast In Situ(Rem) | 2.2d | 2026-10-07 A | 2026-10-10 A | B3.33 05 63.01.65_R SS, B3.33 05 63.01.68 | 100% |  |  | Labor [18.71 h]; Foreman [9.36 h]; Laboratory Officer [9.36 h]; Carpenter [9.36 h]; Steelfixer [9.36 h]; Mason [9.36 h]; TSE Wash out valve Dia. 100 mm on pipes with Dia. 110-400 mm [0.04] | 154.08 | 154.08 | 7.38117744052285E-005 | Cons. | Z1 | TSE | Cons | CS.UNSC | Val&Chs | SUB.C | RD 01 | TSE |
| B3.33 05 63.01.69 |  | Valve & Fitting Installation | 3d | 2026-12-08 | 2026-12-10 | B3.33 05 63.01.66_R, B4.32 84 13.30 |  | 25.32d | 0d | Labor [62.37 h]; Plumber Helper [31.18 h]; Plumber [31.18 h]; Operator [62.37 h]; Boom Truck [32 h]; TSE Wash out valve Dia. 100 mm on pipes with Dia. 110-400 mm [0.45] | 1,650.83 |  | 0.000316336176022407 | Cons. | Z1 | TSE | Cons | CS.UNSC | Val&Chs | SUB.C | RD 01 | TSE |
|  | Solenoid valves | **Solenoid valves** |  | 2026-10-27 | 2026-12-07 |  |  |  |  |  |  |  |  |  |  |  |  |  |  |  |  |  |
|  | Solenoid valve ?1.0 | **1 Solenoid valve ?1.0 inch with box** |  | 2026-10-27 | 2026-12-03 |  |  |  |  |  |  |  |  |  |  |  |  |  |  |  |  |  |
| B4.32 84 13.31 |  | Cable Laying Two-Wire Decoder (12 AWG) | 3d | 2026-10-27 | 2026-10-29 | B4.33 14 13.063, DMM2-Proc-Delv-7259 |  | 46.32d | 0d | Labor [31.18 h]; Electrician [15.59 h]; Two wire decoder cable 12 awg [350] | 4,917.51 |  | 0.00279720557352336 | Cons. | Z1 | TSE | Cons | CS.UNSC | Val&Chs | SUB.C | RD 01 | TSE |
| B4.32 84 13.066 |  | Pull Box Installation | 3d | 2026-10-31 | 2026-11-02 | B4.32 84 13.31 |  | 46.32d | 0d | Labor [31.18 h]; Plumber Helper [15.59 h]; Plumber [15.59 h]; Pull Box - 600mm (L) X 600mm (W) [1.71] | 1,848.31 |  | 0.00108411197572214 | Cons. | Z1 | TSE | Cons | CS.UNSC | Val&Chs | SUB.C | RD 01 | TSE |
| B4.32 84 13.32 |  | Solenoid Valve Box Installation | 3d | 2026-10-31 | 2026-11-02 | B4.32 84 13.31 |  | 49.32d | 3d | Labor [31.18 h]; Plumber Helper [15.59 h]; Plumber [15.59 h]; Solenoid Valve box. 1 Solenoid valve Dia. 1 inch. [1.99] | 2,838.8 |  | 0.000272525309346853 | Cons. | Z1 | TSE | Cons | CS.UNSC | Val&Chs | SUB.C | RD 01 | TSE |
| B4.32 84 13.33 |  | Bubblers Installation | 3d | 2026-12-01 | 2026-12-03 | B4.32 84 13.32, B4.32 84 13.39, B3.33 14 19.01.137, B4.33 14 13.074 |  | 25.32d | 0d | Labor [31.18 h]; Plumber Helper [15.59 h]; Plumber [15.59 h]; Bubbler [67] | 2,706.13 |  | 0.00134020323979369 | Cons. | Z1 | TSE | Cons | CS.UNSC | Val&Chs | SUB.C | RD 01 | TSE |
|  | Solenoid valve ?1.5 | **1 Solenoid valve ?1.5 inch with box** |  | 2026-10-31 | 2026-11-09 |  |  |  |  |  |  |  |  |  |  |  |  |  |  |  |  |  |
| B4.32 84 13.34 |  | Cable Laying Two-Wire Decoder (12 AWG) | 3d | 2026-10-31 | 2026-11-02 | B4.32 84 13.31 |  | 46.32d | 0d | Labor [31.18 h]; Electrician [15.59 h]; Two wire decoder cable 12 awg [350] | 4,917.51 |  | 0.00279720557352336 | Cons. | Z1 | TSE | Cons | CS.UNSC | Val&Chs | SUB.C | RD 01 | TSE |
| B4.32 84 13.067 |  | Pull Box Installation | 3d | 2026-11-03 | 2026-11-05 | B4.32 84 13.066 |  | 46.32d | 0d | Labor [31.18 h]; Plumber Helper [15.59 h]; Plumber [15.59 h]; Pull Box - 600mm (L) X 600mm (W) [1.71] | 1,848.31 |  | 0.00108411197572214 | Cons. | Z1 | TSE | Cons | CS.UNSC | Val&Chs | SUB.C | RD 01 | TSE |
| B4.32 84 13.35 |  | Solenoid Valve Box Installation | 3d | 2026-11-03 | 2026-11-05 | B4.32 84 13.34 |  | 46.32d | 0d | Labor [31.18 h]; Plumber Helper [15.59 h]; Plumber [15.59 h]; Solenoid Valve box. 1 Solenoid valve Dia. 1.5 inch. [5.2] | 8,434.05 |  | 0.00105531822112046 | Cons. | Z1 | TSE | Cons | CS.UNSC | Val&Chs | SUB.C | RD 01 | TSE |
| B4.32 84 13.36 |  | Bubblers Installation | 3d | 2026-11-07 | 2026-11-09 | B4.32 84 13.35, B4.33 14 13.074 |  | 46.32d | 21d | Labor [31.18 h]; Plumber Helper [15.59 h]; Plumber [15.59 h]; Bubbler [67] | 2,706.13 |  | 0.00134020323979369 | Cons. | Z1 | TSE | Cons | CS.UNSC | Val&Chs | SUB.C | RD 01 | TSE |
|  | Solenoid valve ?2.0 | **1 Solenoid valve ?2.0 inch with box** |  | 2026-11-03 | 2026-12-07 |  |  |  |  |  |  |  |  |  |  |  |  |  |  |  |  |  |
| B4.32 84 13.28 |  | Cable Laying Two-Wire Decoder (12 AWG) | 3d | 2026-11-03 | 2026-11-05 | B4.32 84 13.34 |  | 46.32d | 0d | Labor [31.18 h]; Electrician [15.59 h]; Two wire decoder cable 12 awg [350] | 4,917.51 |  | 0.00279720557352336 | Cons. | Z1 | TSE | Cons | CS.UNSC | Val&Chs | SUB.C | RD 01 | TSE |
| B4.32 84 13.068 |  | Pull Box Installation | 3d | 2026-11-07 | 2026-11-09 | B4.32 84 13.067, B4.32 84 13.32, B3.33 14 19.01.137, B4.33 14 13.075 |  | 46.32d | 21d | Labor [31.18 h]; Plumber Helper [15.59 h]; Plumber [15.59 h]; Pull Box - 600mm (L) X 600mm (W) [1.71] | 1,848.31 |  | 0.00108411197572214 | Cons. | Z1 | TSE | Cons | CS.UNSC | Val&Chs | SUB.C | RD 01 | TSE |
| B4.32 84 13.29 |  | Solenoid Valve Box Installation | 3d | 2026-11-07 | 2026-11-09 | B4.32 84 13.28 |  | 46.32d | 21d | Labor [31.18 h]; Plumber Helper [15.59 h]; Plumber [15.59 h]; Solenoid Valve box. 1 Solenoid valve Dia. 2.0inch. [2.79] | 5,829.6 |  | 0.000720076844983757 | Cons. | Z1 | TSE | Cons | CS.UNSC | Val&Chs | SUB.C | RD 01 | TSE |
| B4.32 84 13.30 |  | Bubblers Installation | 3d | 2026-12-05 | 2026-12-07 | B4.32 84 13.29, B4.32 84 13.36, B4.32 84 13.068, B4.32 84 13.33 |  | 25.32d | 0d | Labor [31.18 h]; Plumber Helper [15.59 h]; Plumber [15.59 h]; Bubbler [67] | 2,706.13 |  | 0.00134020323979369 | Cons. | Z1 | TSE | Cons | CS.UNSC | Val&Chs | SUB.C | RD 01 | TSE |

| ID | WBS | Activity | Duration | Start | Finish | Predecessors | Complete | Planned start | Planned finish | Total float | Free float | Resources | Cost | Actual cost | Weight % | DMM2 Weekly Progress | DMM2 Zones | Networks & Stations | DMM2 Phases | Networks Components | All Electrical Scope | Subcontractors works | Dmm2 Roads | Yellow Sheet |
| --- | --- | --- | --- | --- | --- | --- | --- | --- | --- | --- | --- | --- | --- | --- | --- | --- | --- | --- | --- | --- | --- | --- | --- | --- |
|  | Dry Networks | **Dry Networks** |  | 2026-04-30 | 2026-11-02 |  |  |  |  |  |  |  |  |  |  |  |  |  |  |  |  |  |  |  |
|  | MV Network | **Medium Voltage Network** |  | 2026-04-30 | 2026-11-02 |  |  |  |  |  |  |  |  |  |  |  |  |  |  |  |  |  |  |  |
|  | Duct Banks | **Duct Banks** |  | 2026-04-30 | 2026-10-10 |  |  |  |  |  |  |  |  |  |  |  |  |  |  |  |  |  |  |  |
|  | 4 Way | **4 Way** |  | 2026-04-30 | 2026-10-10 |  |  |  |  |  |  |  |  |  |  |  |  |  |  |  |  |  |  |  |
| B2.31 23 00.02 |  | Excavation | 2d | 2026-04-30 A | 2026-05-02 A | B3.33 14 13.01.015, B3.33 14 13.01.025 | 100% |  |  |  |  | Labor [28.35 h]; Foreman [14.17 h]; Operator [28.35 h]; Surveyor [14.17 h]; Surveyor Helper [14.17 h]; Excavator (With Bucket) [16 h]; Water Tanker [16 h]; Dump Truck [16 h]; Plate Compactor [16 h]; Excavation for Trench size 60cm wide and 80cm deep ( for 2 cables) [83.13]; Duct bank for MV cables UPVC (4xDia. 150mm) [2.75] | 3,411.59 | 3,411.59 | 0.00233790321174861 | Cons. | Z1 | MV | Cons | Cbl&Dct | allElec | SUB.C | RD 01 | MV |
| B2.33 71 00.02 |  | Shuttering, Steel Fixing Incl. UPVC Pipe & Conc. Cast | 3d | 2026-05-06 A | 2026-05-09 A | B2.31 23 00.02 | 100% |  |  |  |  | Labor [42.52 h]; Laboratory Officer [21.26 h]; Carpenter [21.26 h]; Steelfixer [21.26 h]; Mason [21.26 h]; Surveyor [21.26 h]; Surveyor Helper [21.26 h]; Excavation for Trench size 60cm wide and 80cm deep ( for 2 cables) [83.13]; Duct bank for MV cables UPVC (4xDia. 150mm) [8.25] | 6,439.38 | 6,439.38 | 0.00510557719618019 | Cons. | Z1 | MV | Cons | Cbl&Dct | allElec | SUB.C | RD 01 | MV |
| B2.33 71 00.021 |  | Backfilling & Warrning Tape (71.00% Completed) | 87d | 2026-06-07 A | 2026-09-15 A | B2.33 71 00.02 | 100% |  |  |  |  | Labor [44.28 h]; Foreman [22.14 h]; Operator [88.56 h]; Surveyor [22.14 h]; Surveyor Helper [22.14 h]; Loader [22.72 h]; Water Tanker [22.72 h]; Dump Truck [22.72 h]; Plate Compactor [22.72 h]; Roller Compactor [22.72 h]; Excavation for Trench size 60cm wide and 80cm deep ( for 2 cables) [118.03]; Duct bank for MV cables UPVC (4xDia. 150mm) [1.95] | 3,769.27 | 3,769.27 | 0.003291739895321 | Cons. | Z1 | MV | Cons | Cbl&Dct | allElec | SUB.C | RD 01 | MV |
| B2.33 71 00.021_R |  | Backfilling & Warrning Tape(Rem) | 3d | 2026-10-07 A | 2026-10-10 A | B2.33 71 00.02, B2.33 71 00.021 | 100% |  |  |  |  | Labor [18.09 h]; Foreman [9.04 h]; Operator [36.17 h]; Surveyor [9.04 h]; Surveyor Helper [9.04 h]; Loader [9.28 h]; Water Tanker [9.28 h]; Dump Truck [9.28 h]; Plate Compactor [9.28 h]; Roller Compactor [9.28 h]; Excavation for Trench size 60cm wide and 80cm deep ( for 2 cables) [48.21]; Duct bank for MV cables UPVC (4xDia. 150mm) [0.8] | 1,539.56 | 1,539.56 | 0.003291739895321 | Cons. | Z1 | MV | Cons | Cbl&Dct | allElec | SUB.C | RD 01 | MV |
|  | Cables | **Cables** |  | 2026-09-01 | 2026-11-02 |  |  |  |  |  |  |  |  |  |  |  |  |  |  |  |  |  |  |  |
|  | 3C,500mm2 | **3C,500mm2** |  | 2026-09-01 | 2026-11-02 |  |  |  |  |  |  |  |  |  |  |  |  |  |  |  |  |  |  |  |
| B2.33 71 49.23.01 |  | Cable 13.8 kV Unarmored | 10.1d | 2026-09-01 A | 2026-09-13 A | B2.33 71 00.021 SS+1d, B2.33 71 00.021 FF+1d | 100% |  |  |  |  | Labor [42.52 h]; Foreman [21.26 h]; Operator [42.52 h]; Boom Truck [24 h]; Electrician [21.26 h]; Cable 13.8 kV 3Cx 500 mm² Al XLPE,/LLDPE / Unarmored [681.79] | 234,058.34 | 234,058.34 | 0.0447374191430308 | Cons. | Z1 | MV | Cons | Cbl&Dct | allElec | SUB.C | RD 01 | MV |
| B2.33 71 49.23.02 |  | Straight joints cables | 3d | 2026-10-21 | 2026-10-24 | B2.33 71 49.23.01 |  |  |  | 82.32d | 4d | Labor [31.18 h]; Foreman [15.59 h]; Electrician [15.59 h]; Straight joints cables for 13.8 kv 3Cx 500 mm², Al /XLPE/LLDPE [2] | 7,880.95 |  | 0.00396214380929156 | Cons. | Z1 | MV | Cons | Cbl&Dct | allElec | SUB.C | RD 01 | MV |
| B2.33 71 49.23.03 |  | Cable Termination | 4d | 2026-10-29 | 2026-11-02 | B2.33 71 49.23.02, B2.33 71 49.23.91 |  |  |  | 78.32d | 0d | Labor [46.78 h]; Foreman [23.39 h]; Electrician [23.39 h]; Cable Termination for 13.8 kv 3Cx 500 mm², Al /XLPE/LLDPE [0.9] | 3,024.89 |  | 0.00152076402091925 | Cons. | Z1 | MV | Cons | Cbl&Dct | allElec | SUB.C | RD 01 | MV |
|  | Low Voltage Network | **Low Voltage Network** |  | 2026-05-11 | 2026-10-19 |  |  |  |  |  |  |  |  |  |  |  |  |  |  |  |  |  |  |  |
|  | Duct Banks | **Duct Banks** |  | 2026-05-11 | 2026-10-19 |  |  |  |  |  |  |  |  |  |  |  |  |  |  |  |  |  |  |  |
|  | 2 Way | **2 Way** |  | 2026-05-11 | 2026-06-14 |  |  |  |  |  |  |  |  |  |  |  |  |  |  |  |  |  |  |  |
| B2.33 71 00 02 97 |  | Excavation | 3d | 2026-05-11 A | 2026-05-14 A | B4.33 14 13.065 | 100% |  |  |  |  | Labor [28.35 h]; Foreman [14.17 h]; Operator [28.35 h]; Surveyor [14.17 h]; Surveyor Helper [14.17 h]; Excavator (With Bucket) [16 h]; Water Tanker [16 h]; Dump Truck [16 h]; Plate Compactor [16 h]; Excavation for Trench size 40cm wide and 65cm deep (for 1 cable); Duct bank for LV cables UPVC (2xDia. 110mm) [10]; SL LV Excavation for Trench size 40cm wide and 65cm deep (for 1 cable) | 2,755.67 | 2,755.67 | 0.00112258975602026 | Cons. | Z1 | LV | Cons | Cbl&Dct | allElec | SUB.C | RD 01 | LV |
| B2.33 71 00 02 98 |  | Shuttering, Steel Fixing Incl. UPVC Pipe & Conc. Cast | 2d | 2026-05-16 A | 2026-05-18 A | B2.33 71 00 02 97 | 100% |  |  |  |  | Labor [85.05 h]; Laboratory Officer [42.52 h]; Carpenter [42.52 h]; Steelfixer [42.52 h]; Mason [42.52 h]; Surveyor [42.52 h]; Surveyor Helper [42.52 h]; Excavation for Trench size 40cm wide and 65cm deep (for 1 cable); Duct bank for LV cables UPVC (2xDia. 110mm) [30]; SL LV Excavation for Trench size 40cm wide and 65cm deep (for 1 cable) | 8,270.78 | 8,270.78 | 0.00336904054414932 | Cons. | Z1 | LV | Cons | Cbl&Dct | allElec | SUB.C | RD 01 | LV |
| B2.33 71 00 02 99 |  | Backfilling & Warrning Tape | 18d | 2026-05-19 A | 2026-06-14 A | B2.33 71 00 02 98 | 100% |  |  |  |  | Labor [70.87 h]; Foreman [35.44 h]; Operator [141.75 h]; Surveyor [35.44 h]; Surveyor Helper [35.44 h]; Loader [40 h]; Water Tanker [40 h]; Dump Truck [40 h]; Plate Compactor [40 h]; Roller Compactor [40 h]; Excavation for Trench size 40cm wide and 65cm deep (for 1 cable); Duct bank for LV cables UPVC (2xDia. 110mm) [10]; SL LV Excavation for Trench size 40cm wide and 65cm deep (for 1 cable) | 2,755.67 | 2,755.67 | 0.00112258975602026 | Cons. | Z1 | LV | Cons | Cbl&Dct | allElec | SUB.C | RD 01 | LV |
|  | 4 Way | **6 Way** |  | 2026-06-08 | 2026-10-19 |  |  |  |  |  |  |  |  |  |  |  |  |  |  |  |  |  |  |  |
| B2.33 71 00 02 100 |  | Excavation | 3d | 2026-06-08 A | 2026-06-10 A | B2.33 71 00 02 97 | 100% |  |  |  |  | Labor [28.35 h]; Foreman [14.17 h]; Operator [28.35 h]; Surveyor [14.17 h]; Surveyor Helper [14.17 h]; Excavator (With Bucket) [16 h]; Water Tanker [16 h]; Dump Truck [16 h]; Plate Compactor [16 h]; Excavation for Trench size 90cm wide and 65cm deep ( for 3 cables); Duct bank for LV cables UPVC (6xDia. 110mm) [5]; SL LV Excavation for Trench size 90cm wide and 65cm deep ( for 3 cables) | 2,844.71 | 2,844.71 | 0.00162137899963146 | Cons. | Z1 | LV | Cons | Cbl&Dct | allElec | SUB.C | RD 01 | LV |
| B2.33 71 00 02 101 |  | Shuttering, Steel Fixing Incl. UPVC Pipe & Conc. Cast (0.00% Completed) | 6d | 2026-09-09 A | 2026-09-15 A | B2.33 71 00 02 100 | 100% |  |  |  |  | Labor; Laboratory Officer; Carpenter; Steelfixer; Mason; Surveyor; Surveyor Helper; Excavation for Trench size 90cm wide and 65cm deep ( for 3 cables); Duct bank for LV cables UPVC (6xDia. 110mm); SL LV Excavation for Trench size 90cm wide and 65cm deep ( for 3 cables) |  |  | 0.00486436653485481 | Cons. | Z1 | LV | Cons | Cbl&Dct | allElec | SUB.C | RD 01 | LV |
| B2.33 71 00 02 101_R |  | Shuttering, Steel Fixing Incl. UPVC Pipe & Conc. Cast(Rem) | 2d | 2026-10-14 A | 2026-10-15 A | B2.33 71 00 02 100, B2.33 71 00 02 101 | 100% |  |  |  |  | Labor [93.55 h]; Laboratory Officer [46.78 h]; Carpenter [46.78 h]; Steelfixer [46.78 h]; Mason [46.78 h]; Surveyor [46.78 h]; Surveyor Helper [46.78 h]; Excavation for Trench size 90cm wide and 65cm deep ( for 3 cables); Duct bank for LV cables UPVC (6xDia. 110mm) [15]; SL LV Excavation for Trench size 90cm wide and 65cm deep ( for 3 cables) | 8,534.12 | 8,534.12 | 0.00486436653485481 | Cons. | Z1 | LV | Cons | Cbl&Dct | allElec | SUB.C | RD 01 | LV |
| B2.33 71 00 02 102 |  | Backfilling & Warrning Tape | 3d | 2026-10-17 A | 2026-10-19 A | B2.33 71 00 02 101_R, B2.33 71 00 02 99 SS, B2.33 71 00 01 13, B2.33 71 00.267_R, B2.33 71 00 02 141, B2.33 71 00 02 153, B2.33 71 00 02 150, B2.33 71 00 02 99 | 100% | 2026-11-07 | 2026-11-10 |  |  | Labor [77.96 h]; Foreman [38.98 h]; Operator [155.92 h]; Surveyor [38.98 h]; Surveyor Helper [38.98 h]; Loader [40 h]; Water Tanker [40 h]; Dump Truck [40 h]; Plate Compactor [40 h]; Roller Compactor [40 h]; Excavation for Trench size 90cm wide and 65cm deep ( for 3 cables); Duct bank for LV cables UPVC (6xDia. 110mm) [5]; SL LV Excavation for Trench size 90cm wide and 65cm deep ( for 3 cables) | 2,844.71 | 2,844.71 | 0.00162160853559189 | Cons. | Z1 | LV | Cons | Cbl&Dct | allElec | SUB.C | RD 01 | LV |

| ID | WBS | Activity | Duration | Start | Finish | Predecessors | Complete | Remaining | Planned start | Planned finish | Total float | Free float | Resources | Cost | Actual cost | Weight % | DMM2 Weekly Progress | DMM2 Zones | Networks & Stations | DMM2 Phases | Networks Components | All Electrical Scope | Subcontractors works | Dmm2 Roads | Yellow Sheet |
| --- | --- | --- | --- | --- | --- | --- | --- | --- | --- | --- | --- | --- | --- | --- | --- | --- | --- | --- | --- | --- | --- | --- | --- | --- | --- |
|  | Street Lighting | **Street Lighting** |  | 2026-08-29 | 2026-10-28 |  |  |  |  |  |  |  |  |  |  |  |  |  |  |  |  |  |  |  |  |
|  | Cables | **Cables** |  | 2026-09-12 | 2026-10-22 |  |  |  |  |  |  |  |  |  |  |  |  |  |  |  |  |  |  |  |  |
|  | 4C,10+1C,10mm2 | **4C,10+1C,10mm2** |  | 2026-09-12 | 2026-10-22 |  |  |  |  |  |  |  |  |  |  |  |  |  |  |  |  |  |  |  |  |
| B2.33 71 19 62 |  | Land Adjustment (50.00% Completed) | 4d | 2026-09-12 A | 2026-09-15 A | B2.33 71 00 02 100, DMM2-Proc-PO-091 | 100% |  |  |  |  |  | Labor [15.59 h]; Foreman [7.8 h]; Operator [15.59 h]; Surveyor [3.9 h]; Surveyor Helper [3.9 h]; Excavator (With Bucket) [8 h]; Water Tanker [8 h]; Dump Truck [8 h]; Roller Compactor [8 h]; SL Cable, Copper 4x10mm2/ CU/XLPE/SWA/PVC + 1x10mm2 CU/PVC [208.25] | 12,981.98 | 12,981.98 | 0.00496258855349975 | Cons. | Z1 | SL | Cons | Cables | allElec | SUB.C | RD 01 | SL |
| B2.33 71 49.23.112 |  | Cable Pulling (50.00% Completed) | 2d | 2026-09-14 A | 2026-09-15 A | DMM2-Proc-Delv-1308, B2.33 71 19 62 SS | 100% |  |  |  |  |  | Labor [31.18 h]; Foreman [15.59 h]; Surveyor [15.59 h]; Surveyor Helper [15.59 h]; Electrician [15.59 h]; SL Cable, Copper 4x10mm2/ CU/XLPE/SWA/PVC + 1x10mm2 CU/PVC [624.75] | 38,945.48 | 38,945.48 | 0.0148875878281853 | Cons. | Z1 | SL | Cons | Cables | allElec | SUB.C | RD 01 | SL |
| B2.33 71 19 62_R |  | Land Adjustment(Rem) | 1d | 2026-10-07 A | 2026-10-07 A | B2.33 71 00 02 100, DMM2-Proc-PO-091, B2.33 71 19 62 | 100% |  |  |  |  |  | Labor [15.59 h]; Foreman [7.8 h]; Operator [15.59 h]; Surveyor [3.9 h]; Surveyor Helper [3.9 h]; Excavator (With Bucket) [8 h]; Water Tanker [8 h]; Dump Truck [8 h]; Roller Compactor [8 h]; SL Cable, Copper 4x10mm2/ CU/XLPE/SWA/PVC + 1x10mm2 CU/PVC [208.25] | 12,981.98 | 12,981.98 | 0.00496258855349975 | Cons. | Z1 | SL | Cons | Cables | allElec | SUB.C | RD 01 | SL |
| B2.33 71 19 72 |  | Backfilling | 3d | 2026-10-11 A | 2026-10-12 A | B2.33 71 49.23.112_R, B2.33 71 16.28 FF | 100% |  | 2026-11-24 | 2026-11-26 |  |  | Labor [93.55 h]; Foreman [46.78 h]; Operator [93.55 h]; Surveyor [46.78 h]; Surveyor Helper [46.78 h]; Loader [48 h]; Water Tanker [48 h]; Dump Truck [48 h]; Plate Compactor [48 h]; SL Cable, Copper 4x10mm2/ CU/XLPE/SWA/PVC + 1x10mm2 CU/PVC [416.5] | 25,963.96 | 25,963.96 | 0.00496258855349975 | Cons. | Z1 | SL | Cons | Cables | allElec | SUB.C | RD 01 | SL |
| B2.33 71 49.23.112_R |  | Cable Pulling(Rem) | 2d | 2026-10-21 | 2026-10-22 | DMM2-Proc-Delv-1308, B2.33 71 19 62_R SS, B2.33 71 49.23.112 |  |  |  |  | 107.32d | 44d | Labor [31.18 h]; Foreman [15.59 h]; Surveyor [15.59 h]; Surveyor Helper [15.59 h]; Electrician [15.59 h]; SL Cable, Copper 4x10mm2/ CU/XLPE/SWA/PVC + 1x10mm2 CU/PVC [624.75] | 38,945.48 |  | 0.0148875878281853 | Cons. | Z1 | SL | Cons | Cables | allElec | SUB.C | RD 01 | SL |
|  | Earthing | **Earthing** |  | 2026-10-21 | 2026-10-28 |  |  |  |  |  |  |  |  |  |  |  |  |  |  |  |  |  |  |  |  |
| B2.33 71 19 011 |  | Land Adjustment | 2d | 2026-10-21 | 2026-10-22 | B2.33 71 16.021_R |  |  |  |  | 102.32d | 0d | Labor [31.18 h]; Foreman [15.59 h]; Operator [31.18 h]; Surveyor [7.8 h]; Surveyor Helper [7.8 h]; Excavator (With Bucket) [16 h]; Water Tanker [16 h]; Dump Truck [16 h]; Roller Compactor [16 h]; SL Earthing Including lighting poles circuits [0.45] | 904.39 |  | 0.000454679838542865 | Cons. | Z1 | SL | Cons | Cables | allElec | SUB.C | RD 01 | SL |
| B2.33 71 19 012 |  | Earth Rods & Conduits | 2d | 2026-10-24 | 2026-10-25 | B2.33 71 19 011, B2.1.33 81 26.11 |  |  |  |  | 102.32d | 0d | Labor [31.18 h]; Foreman [15.59 h]; Electrician [15.59 h]; SL Earthing Including lighting poles circuits [1.33] | 2,672.96 |  | 0.00134383152280447 | Cons. | Z1 | SL | Cons | Cables | allElec | SUB.C | RD 01 | SL |
| B2.33 71 19 013 |  | Backfilling | 3d | 2026-10-26 | 2026-10-28 | B2.33 71 19 012 |  |  |  |  | 102.32d | 39d | Labor [62.37 h]; Foreman [31.18 h]; Operator [62.37 h]; Surveyor [31.18 h]; Surveyor Helper [31.18 h]; Loader [32 h]; Water Tanker [32 h]; Dump Truck [32 h]; Plate Compactor [32 h]; SL Earthing Including lighting poles circuits [0.45] | 904.39 |  | 0.000454679838542865 | Cons. | Z1 | SL | Cons | Cables | allElec | SUB.C | RD 01 | SL |
|  | SL Poles | **SL Poles** |  | 2026-08-29 | 2026-10-21 |  |  |  |  |  |  |  |  |  |  |  |  |  |  |  |  |  |  |  |  |
|  | Pole (10 M Sngl Arm) | **Pole (10 M Single Arm)** |  | 2026-08-29 | 2026-10-21 |  |  |  |  |  |  |  |  |  |  |  |  |  |  |  |  |  |  |  |  |
| B2.33 71 16.021 |  | Excavation (92.00% Completed) | 15.1d | 2026-08-29 A | 2026-09-15 A | B1.2.32 11 26.01.1 SS | 100% |  |  |  |  |  | Labor [28.69 h]; Foreman [14.34 h]; Operator [28.69 h]; Surveyor [14.34 h]; Surveyor Helper [14.34 h]; Excavator (With Bucket) [14.72 h]; Dump Truck [14.72 h]; Lighting poles with 1 arm, height of ( 10) meters [6.07] | 54,186.62 | 54,186.62 | 0.0112471278804954 | Cons. | Z1 | SL | Cons | Pls&Lmn | allElec | SUB.C | RD 01 | SL |
| B2.33 71 16.022 |  | PC & RC Foundation (92.00% Completed) | 14.1d | 2026-08-30 A | 2026-09-15 A | B2.33 71 16.021 SS | 100% |  |  |  |  |  | Labor [57.38 h]; Foreman [28.69 h]; Laboratory Officer [28.69 h]; Carpenter [28.69 h]; Steelfixer [28.69 h]; Mason [28.69 h]; Lighting poles with 1 arm, height of ( 10) meters [6.07] | 54,186.62 | 54,186.62 | 0.0112471278804954 | Cons. | Z1 | SL | Cons | Pls&Lmn | allElec | SUB.C | RD 01 | SL |
| B2.33 71 16.023 |  | Lighting Poles Installation Incl power box, Cables (92.00% Completed) | 13.1d | 2026-08-31 A | 2026-09-15 A | B2.33 71 16.022 SS | 100% |  |  |  |  |  | Labor [43.03 h]; Operator [43.03 h]; Mobile Crane [22.08 h]; Electrician [21.52 h]; Lighting poles with 1 arm, height of ( 10) meters [12.14] | 108,373.24 | 108,373.24 | 0.0224942557609906 | Cons. | Z1 | SL | Cons | Pls&Lmn | allElec | SUB.C | RD 01 | SL |
| B2.26.56.19.01 |  | Lighting Luminares Inst (92.00% Completed) | 5.52d | 2026-09-09 A | 2026-09-15 A | B2.33 71 16.023 SS | 100% |  |  |  |  |  | Labor [43.03 h]; Operator [43.03 h]; Manlift [22.08 h]; Street Lighting( LED), Lamp Lumen: 14560, Luminare Lumen:12700 , complete with control gear and lamp, (80) WATT. [49.68] | 46,061.71 | 46,061.71 | 0.0047113256383061 | Cons. | Z1 | SL | Cons | Pls&Lmn | allElec | SUB.C | RD 01 | SL |
| B2.26.56.19.01_R |  | Lighting Luminares Inst(Rem) | 2d | 2026-10-07 A | 2026-10-08 A | B2.33 71 16.023_R SS, B2.26.56.19.01 | 100% |  |  |  |  |  | Labor [3.74 h]; Operator [3.74 h]; Manlift [1.92 h]; Street Lighting( LED), Lamp Lumen: 14560, Luminare Lumen:12700 , complete with control gear and lamp, (80) WATT. [4.32] | 4,005.37 | 4,005.37 | 0.0047113256383061 | Cons. | Z1 | SL | Cons | Pls&Lmn | allElec | SUB.C | RD 01 | SL |
| B2.33 71 16.021_R |  | Excavation(Rem) | 2d | 2026-10-07 A | 2026-10-08 A | B1.2.32 11 26.01.1_R SS, B2.33 71 16.021 | 100% |  |  |  |  |  | Labor [2.49 h]; Foreman [1.25 h]; Operator [2.49 h]; Surveyor [1.25 h]; Surveyor Helper [1.25 h]; Excavator (With Bucket) [1.28 h]; Dump Truck [1.28 h]; Lighting poles with 1 arm, height of ( 10) meters [0.53] | 4,711.88 | 4,711.88 | 0.0112471278804954 | Cons. | Z1 | SL | Cons | Pls&Lmn | allElec | SUB.C | RD 01 | SL |
| B2.33 71 16.022_R |  | PC & RC Foundation(Rem) | 2d | 2026-10-07 A | 2026-10-08 A | B2.33 71 16.021_R SS, B2.33 71 16.022 | 100% |  |  |  |  |  | Labor [4.99 h]; Foreman [2.49 h]; Laboratory Officer [2.49 h]; Carpenter [2.49 h]; Steelfixer [2.49 h]; Mason [2.49 h]; Lighting poles with 1 arm, height of ( 10) meters [0.53] | 4,711.88 | 4,711.88 | 0.0112471278804954 | Cons. | Z1 | SL | Cons | Pls&Lmn | allElec | SUB.C | RD 01 | SL |
| B2.33 71 16.023_R |  | Lighting Poles Installation Incl power box, Cables(Rem) | 2d | 2026-10-07 A | 2026-10-08 A | B2.33 71 16.022_R SS, B2.33 71 16.023 | 100% |  |  |  |  |  | Labor [3.74 h]; Operator [3.74 h]; Mobile Crane [1.92 h]; Electrician [1.87 h]; Lighting poles with 1 arm, height of ( 10) meters [1.06] | 9,423.76 | 9,423.76 | 0.0224942557609906 | Cons. | Z1 | SL | Cons | Pls&Lmn | allElec | SUB.C | RD 01 | SL |
| B2.33 71 16.025 |  | Backfilling, Grouting & Chamfering | 3d | 2026-10-10 A | 2026-10-21 | B2.26.56.19.01_R, B2.33 71 00 02 72 | 80% | 0.6d | 2026-10-24 | 2026-10-26 | 98.72d | 14.4d | Labor [62.37 h]; Foreman [31.18 h]; Mason [31.18 h]; Operator [62.37 h]; Surveyor [31.18 h]; Surveyor Helper [31.18 h]; Loader [32 h]; Water Tanker [32 h]; Dump Truck [32 h]; Plate Compactor [32 h]; Lighting poles with 1 arm, height of ( 10) meters [6.6] | 58,898.5 | 47,118.8 | 0.0112471278804954 | Cons. | Z1 | SL | Cons | Pls&Lmn | allElec | SUB.C | RD 01 | SL |
|  | Telecommunication | **Telecommunication Network** |  | 2026-06-30 | 2026-10-28 |  |  |  |  |  |  |  |  |  |  |  |  |  |  |  |  |  |  |  |  |
|  | Manholes | **Manholes** |  | 2026-09-09 | 2026-10-15 |  |  |  |  |  |  |  |  |  |  |  |  |  |  |  |  |  |  |  |  |
|  | Manhole Type 1 | **Manhole Type 1** |  | 2026-09-12 | 2026-10-15 |  |  |  |  |  |  |  |  |  |  |  |  |  |  |  |  |  |  |  |  |
| B2.31 23 00.571 |  | Excavation (88.00% Completed) | 4d | 2026-09-12 A | 2026-09-15 A | DMM2-Proc-PO-089, B2.33 71 00.021 SS | 100% |  |  |  |  |  | Labor [27.44 h]; Foreman [13.72 h]; Operator [27.44 h]; Surveyor [13.72 h]; Surveyor Helper [13.72 h]; Excavator (With Bucket) [14.08 h]; Water Tanker [14.08 h]; Dump Truck [14.08 h]; Plate Compactor [14.08 h]; Manhole Type 1 [1.09] | 7,714.43 | 7,714.43 | 0.00167335317103356 | Cons. | Z1 | Telecom | Cons | DCT&MNH | allElec | SUB.C | RD 01 | TEL |
| B2.33 71 00.141 |  | Manhole Installation (88.00% Completed) | 2d | 2026-09-14 A | 2026-09-15 A | DMM2-Proc-Delv-1288, B2.31 23 00.571 SS | 100% |  |  |  |  |  | Labor [27.44 h]; Laboratory Officer [13.72 h]; Carpenter [13.72 h]; Steelfixer [13.72 h]; Mason [13.72 h]; Surveyor [13.72 h]; Surveyor Helper [13.72 h]; Manhole Type 1 [3.27] | 23,143.29 | 23,143.29 | 0.00502005951310069 | Cons. | Z1 | Telecom | Cons | DCT&MNH | allElec | SUB.C | RD 01 | TEL |
| B2.33 71 00.151 |  | Backfilling & Warrning Tape (88.00% Completed) | 1d | 2026-09-15 A | 2026-09-15 A | B2.33 71 00.181, B2.33 71 00.141 SS | 100% |  |  |  |  |  | Labor [68.61 h]; Foreman [34.3 h]; Operator [137.21 h]; Surveyor [34.3 h]; Surveyor Helper [34.3 h]; Loader [35.2 h]; Water Tanker [35.2 h]; Dump Truck [35.2 h]; Plate Compactor [35.2 h]; Roller Compactor [35.2 h]; Manhole Type 1 [1.09] | 7,714.43 | 7,714.43 | 0.00167335317103356 | Cons. | Z1 | Telecom | Cons | DCT&MNH | allElec | SUB.C | RD 01 | TEL |
| B2.31 23 00.571_R |  | Excavation(Rem) | 2d | 2026-10-14 A | 2026-10-15 A | DMM2-Proc-PO-089, B2.33 71 00.021_R SS, B2.31 23 00.571 | 100% |  |  |  |  |  | Labor [3.74 h]; Foreman [1.87 h]; Operator [3.74 h]; Surveyor [1.87 h]; Surveyor Helper [1.87 h]; Excavator (With Bucket) [1.92 h]; Water Tanker [1.92 h]; Dump Truck [1.92 h]; Plate Compactor [1.92 h]; Manhole Type 1 [0.15] | 1,051.97 | 1,051.97 | 0.00167335317103356 | Cons. | Z1 | Telecom | Cons | DCT&MNH | allElec | SUB.C | RD 01 | TEL |
| B2.33 71 00.141_R |  | Manhole Installation(Rem) | 2d | 2026-10-14 A | 2026-10-15 A | DMM2-Proc-Delv-1288, B2.31 23 00.571_R SS, B2.33 71 00.141 | 100% |  |  |  |  |  | Labor [3.74 h]; Laboratory Officer [1.87 h]; Carpenter [1.87 h]; Steelfixer [1.87 h]; Mason [1.87 h]; Surveyor [1.87 h]; Surveyor Helper [1.87 h]; Manhole Type 1 [0.45] | 3,155.9 | 3,155.9 | 0.00502005951310069 | Cons. | Z1 | Telecom | Cons | DCT&MNH | allElec | SUB.C | RD 01 | TEL |
| B2.33 71 00.151_R |  | Backfilling & Warrning Tape(Rem) | 2d | 2026-10-14 A | 2026-10-15 A | B2.33 71 00.181, B2.33 71 00.141_R SS, B2.33 71 00.151 | 100% |  |  |  |  |  | Labor [9.36 h]; Foreman [4.68 h]; Operator [18.71 h]; Surveyor [4.68 h]; Surveyor Helper [4.68 h]; Loader [4.8 h]; Water Tanker [4.8 h]; Dump Truck [4.8 h]; Plate Compactor [4.8 h]; Roller Compactor [4.8 h]; Manhole Type 1 [0.15] | 1,051.97 | 1,051.97 | 0.00167335317103356 | Cons. | Z1 | Telecom | Cons | DCT&MNH | allElec | SUB.C | RD 01 | TEL |

| ID | WBS | Activity | Duration | Start | Finish | Predecessors | Complete | Planned start | Planned finish | Resources | Cost | Actual cost | Weight % | DMM2 Weekly Progress | DMM2 Zones | Networks & Stations | DMM2 Phases | Networks Components | All Electrical Scope | Subcontractors works | Dmm2 Roads | Yellow Sheet |
| --- | --- | --- | --- | --- | --- | --- | --- | --- | --- | --- | --- | --- | --- | --- | --- | --- | --- | --- | --- | --- | --- | --- |
|  | Manhole Type 2 | **Manhole Type 2** |  | 2026-09-09 | 2026-10-15 |  |  |  |  |  |  |  |  |  |  |  |  |  |  |  |  |  |
| B2.31 23 00.581 |  | Excavation (88.00% Completed) | 6d | 2026-09-09 A | 2026-09-15 A | B2.31 23 00.571 SS | 100% |  |  | Labor [27.44 h]; Foreman [13.72 h]; Operator [27.44 h]; Surveyor [13.72 h]; Surveyor Helper [13.72 h]; Excavator (With Bucket) [14.08 h]; Water Tanker [14.08 h]; Dump Truck [14.08 h]; Plate Compactor [14.08 h]; Manhole Type 2 [0.46] | 2,893.17 | 2,893.17 | 0.000634453248743172 | Cons. | Z1 | Telecom | Cons | DCT&MNH | allElec | SUB.C | RD 01 | TEL |
| B2.33 71 00.161 |  | Manhole Installation (88.00% Completed) | 4d | 2026-09-12 A | 2026-09-15 A | B2.31 23 00.581 SS | 100% |  |  | Labor [27.44 h]; Laboratory Officer [13.72 h]; Carpenter [13.72 h]; Steelfixer [13.72 h]; Mason [13.72 h]; Surveyor [13.72 h]; Surveyor Helper [13.72 h]; Manhole Type 2 [1.37] | 8,679.52 | 8,679.52 | 0.00190336462403523 | Cons. | Z1 | Telecom | Cons | DCT&MNH | allElec | SUB.C | RD 01 | TEL |
| B2.33 71 00.171 |  | Backfilling & Warrning Tape (88.00% Completed) | 3d | 2026-09-13 A | 2026-09-15 A | B2.33 71 00.161 SS | 100% |  |  | Labor [54.89 h]; Foreman [27.44 h]; Operator [109.77 h]; Surveyor [27.44 h]; Surveyor Helper [27.44 h]; Loader [28.16 h]; Water Tanker [28.16 h]; Dump Truck [28.16 h]; Plate Compactor [28.16 h]; Roller Compactor [28.16 h]; Manhole Type 2 [0.46] | 2,893.17 | 2,893.17 | 0.000634453248743172 | Cons. | Z1 | Telecom | Cons | DCT&MNH | allElec | SUB.C | RD 01 | TEL |
| B2.31 23 00.581_R |  | Excavation(Rem) | 2d | 2026-10-14 A | 2026-10-15 A | B2.31 23 00.571_R SS, B2.31 23 00.581 | 100% |  |  | Labor [3.74 h]; Foreman [1.87 h]; Operator [3.74 h]; Surveyor [1.87 h]; Surveyor Helper [1.87 h]; Excavator (With Bucket) [1.92 h]; Water Tanker [1.92 h]; Dump Truck [1.92 h]; Plate Compactor [1.92 h]; Manhole Type 2 [0.06] | 394.52 | 394.52 | 0.000634453248743172 | Cons. | Z1 | Telecom | Cons | DCT&MNH | allElec | SUB.C | RD 01 | TEL |
| B2.33 71 00.161_R |  | Manhole Installation(Rem) | 2d | 2026-10-14 A | 2026-10-15 A | B2.31 23 00.581_R SS, B2.33 71 00.161 | 100% |  |  | Labor [3.74 h]; Laboratory Officer [1.87 h]; Carpenter [1.87 h]; Steelfixer [1.87 h]; Mason [1.87 h]; Surveyor [1.87 h]; Surveyor Helper [1.87 h]; Manhole Type 2 [0.19] | 1,183.57 | 1,183.57 | 0.00190336462403523 | Cons. | Z1 | Telecom | Cons | DCT&MNH | allElec | SUB.C | RD 01 | TEL |
| B2.33 71 00.171_R |  | Backfilling & Warrning Tape(Rem) | 2d | 2026-10-14 A | 2026-10-15 A | B2.33 71 00.161_R SS, B2.33 71 00.171 | 100% |  |  | Labor [7.48 h]; Foreman [3.74 h]; Operator [14.97 h]; Surveyor [3.74 h]; Surveyor Helper [3.74 h]; Loader [3.84 h]; Water Tanker [3.84 h]; Dump Truck [3.84 h]; Plate Compactor [3.84 h]; Roller Compactor [3.84 h]; Manhole Type 2 [0.06] | 394.52 | 394.52 | 0.000634453248743172 | Cons. | Z1 | Telecom | Cons | DCT&MNH | allElec | SUB.C | RD 01 | TEL |
|  | Crossing Ducts | **Road Crossing Ducts** |  | 2026-06-30 | 2026-07-15 |  |  |  |  |  |  |  |  |  |  |  |  |  |  |  |  |  |
|  | 1 | **Size (6*50mm) HDPE** |  | 2026-06-30 | 2026-07-15 |  |  |  |  |  |  |  |  |  |  |  |  |  |  |  |  |  |
| B2.31 23 00.591 |  | Excavation | 2d | 2026-06-30 A | 2026-07-02 A | B2.33 71 00 02 100 | 100% |  |  | Labor [28.35 h]; Foreman [14.17 h]; Operator [28.35 h]; Surveyor [14.17 h]; Surveyor Helper [14.17 h]; Excavator (With Bucket) [16 h]; Water Tanker [16 h]; Dump Truck [16 h]; Plate Compactor [16 h]; Road crossing ducts, (6*50mm) HDPE [7.13] | 2,221.93 | 2,221.93 | 0.000381434848303997 | Cons. | Z1 | Telecom | Cons | DCT&MNH | allElec | SUB.C | RD 01 | TEL |
| B2.33 71 00.181 |  | Shuttering, Steel Fixing Incl. UPVC Pipe & Conc. Cast | 2d | 2026-07-02 A | 2026-07-05 A | B2.31 23 00.591 | 100% |  |  | Labor [42.52 h]; Laboratory Officer [21.26 h]; Carpenter [21.26 h]; Steelfixer [21.26 h]; Mason [21.26 h]; Surveyor [21.26 h]; Surveyor Helper [21.26 h]; Road crossing ducts, (6*50mm) HDPE [21.37] | 6,660.61 | 6,660.61 | 0.00114341541939146 | Cons. | Z1 | Telecom | Cons | DCT&MNH | allElec | SUB.C | RD 01 | TEL |
| B2.33 71 00.191 |  | Backfilling & Warrning Tape | 4.33d | 2026-07-10 A | 2026-07-15 A | B2.33 71 00.181 | 100% | 2026-07-11 | 2026-07-15 | Labor [56.7 h]; Foreman [28.35 h]; Operator [113.4 h]; Surveyor [28.35 h]; Surveyor Helper [28.35 h]; Loader [32 h]; Water Tanker [32 h]; Dump Truck [32 h]; Plate Compactor [32 h]; Roller Compactor [32 h]; Road crossing ducts, (6*50mm) HDPE [7.13] | 2,221.93 | 2,221.93 | 0.000381434848303997 | Cons. | Z1 | Telecom | Cons | DCT&MNH | allElec | SUB.C | RD 01 | TEL |
|  | 2 | **Size (2*32mm) HDPE** |  | 2026-07-02 | 2026-07-12 |  |  |  |  |  |  |  |  |  |  |  |  |  |  |  |  |  |
| B2.31 23 00.601 |  | Excavation | 1d | 2026-07-02 A | 2026-07-04 A | B2.31 23 00.591 | 100% |  |  | Labor [28.35 h]; Foreman [14.17 h]; Operator [28.35 h]; Surveyor [14.17 h]; Surveyor Helper [14.17 h]; Excavator (With Bucket) [16 h]; Water Tanker [16 h]; Dump Truck [16 h]; Plate Compactor [16 h]; Road crossing ducts, (2*32mm) HDPE [3.35] | 547.76 | 547.76 | 7.49712936569771E-005 | Cons. | Z1 | Telecom | Cons | DCT&MNH | allElec | SUB.C | RD 01 | TEL |
| B2.33 71 00.201 |  | Shuttering, Steel Fixing Incl. UPVC Pipe & Conc. Cast | 4d | 2026-07-04 A | 2026-07-08 A | B2.31 23 00.601 | 100% |  |  | Labor [42.52 h]; Laboratory Officer [21.26 h]; Carpenter [21.26 h]; Steelfixer [21.26 h]; Mason [21.26 h]; Surveyor [21.26 h]; Surveyor Helper [21.26 h]; Road crossing ducts, (2*32mm) HDPE [10.04] | 1,639.89 | 1,639.89 | 0.000224448220761883 | Cons. | Z1 | Telecom | Cons | DCT&MNH | allElec | SUB.C | RD 01 | TEL |
| B2.33 71 00.211 |  | Backfilling & Warrning Tape | 3d | 2026-07-08 A | 2026-07-12 A | B2.33 71 00.201 | 100% |  |  | Labor [56.7 h]; Foreman [28.35 h]; Operator [113.4 h]; Surveyor [28.35 h]; Surveyor Helper [28.35 h]; Loader [32 h]; Water Tanker [32 h]; Dump Truck [32 h]; Plate Compactor [32 h]; Roller Compactor [32 h]; Road crossing ducts, (2*32mm) HDPE [3.35] | 547.76 | 547.76 | 7.49712936569771E-005 | Cons. | Z1 | Telecom | Cons | DCT&MNH | allElec | SUB.C | RD 01 | TEL |
|  | Ducts | **Ducts** |  | 2026-09-05 | 2026-10-15 |  |  |  |  |  |  |  |  |  |  |  |  |  |  |  |  |  |
|  | (6*50mm) | **Size (6*50mm) HDPE ducts** |  | 2026-09-05 | 2026-10-15 |  |  |  |  |  |  |  |  |  |  |  |  |  |  |  |  |  |
| B2.1.33 81 26.11 |  | Excavation | 2d | 2026-09-05 A | 2026-09-07 A | B2.31 23 00.591 | 100% |  |  | Labor [28.35 h]; Foreman [14.17 h]; Operator [28.35 h]; Surveyor [14.17 h]; Surveyor Helper [14.17 h]; Excavator (With Bucket) [16 h]; Water Tanker [16 h]; Dump Truck [16 h]; Plate Compactor [16 h]; (6*50mm) HDPE ducts [125.82] | 35,460.35 | 35,460.35 | 0.00690393952512995 | Cons. | Z1 | Telecom | Cons | DCT&MNH | allElec | SUB.C | RD 01 | TEL |
| B2.1.33 81 26.12 |  | HDPE Pipe, Shuttering, Steel Fixing & Conc. Cast | 1d | 2026-09-07 A | 2026-09-08 A | B2.1.33 81 26.11 | 100% |  |  | Labor [85.05 h]; Laboratory Officer [42.52 h]; Carpenter [42.52 h]; Steelfixer [42.52 h]; Mason [42.52 h]; Surveyor [42.52 h]; Surveyor Helper [42.52 h]; (6*50mm) HDPE ducts [377.45] | 106,381.04 | 106,381.04 | 0.0207118185753898 | Cons. | Z1 | Telecom | Cons | DCT&MNH | allElec | SUB.C | RD 01 | TEL |
| B2.1.33 81 26.13 |  | Backfilling & Warrning Tape (88.00% Completed) | 6d | 2026-09-09 A | 2026-09-15 A | B2.33 71 00.171 SS | 100% |  |  | Labor [68.61 h]; Foreman [34.3 h]; Operator [137.21 h]; Surveyor [34.3 h]; Surveyor Helper [34.3 h]; Loader [35.2 h]; Water Tanker [35.2 h]; Dump Truck [35.2 h]; Plate Compactor [35.2 h]; Roller Compactor [35.2 h]; (6*50mm) HDPE ducts [110.72] | 31,205.1 | 31,205.1 | 0.00690393952512995 | Cons. | Z1 | Telecom | Cons | DCT&MNH | allElec | SUB.C | RD 01 | TEL |
| B2.1.33 81 26.13_R |  | Backfilling & Warrning Tape(Rem) | 2d | 2026-10-14 A | 2026-10-15 A | B2.33 71 00.171_R SS, B2.1.33 81 26.13 | 100% |  |  | Labor [9.36 h]; Foreman [4.68 h]; Operator [18.71 h]; Surveyor [4.68 h]; Surveyor Helper [4.68 h]; Loader [4.8 h]; Water Tanker [4.8 h]; Dump Truck [4.8 h]; Plate Compactor [4.8 h]; Roller Compactor [4.8 h]; (6*50mm) HDPE ducts [15.1] | 4,255.24 | 4,255.24 | 0.00690393952512995 | Cons. | Z1 | Telecom | Cons | DCT&MNH | allElec | SUB.C | RD 01 | TEL |
|  | (6*50mm+2*32mm) | **Size (6*50mm+2*32mm) HDPE ducts** |  | 2026-09-06 | 2026-10-15 |  |  |  |  |  |  |  |  |  |  |  |  |  |  |  |  |  |
| B2.1.33 81 26.21 |  | Excavation | 1d | 2026-09-06 A | 2026-09-07 A | B2.1.33 81 26.11 | 100% |  |  | Labor [28.35 h]; Foreman [14.17 h]; Operator [28.35 h]; Surveyor [14.17 h]; Surveyor Helper [14.17 h]; Excavator (With Bucket) [16 h]; Water Tanker [16 h]; Dump Truck [16 h]; Plate Compactor [16 h]; (6*50mm+2*32mm) HDPE ducts [48.51] | 21,251.23 | 21,251.23 | 0.00243727564627162 | Cons. | Z1 | Telecom | Cons | DCT&MNH | allElec | SUB.C | RD 01 | TEL |
| B2.1.33 81 26.22 |  | HDPE Pipe, Shuttering, Steel Fixing & Conc. Cast | 1d | 2026-09-07 A | 2026-09-08 A | B2.1.33 81 26.21 | 100% |  |  | Labor [85.05 h]; Laboratory Officer [42.52 h]; Carpenter [42.52 h]; Steelfixer [42.52 h]; Mason [42.52 h]; Surveyor [42.52 h]; Surveyor Helper [42.52 h]; (6*50mm+2*32mm) HDPE ducts [145.49] | 63,742.79 | 63,742.79 | 0.00731057705386804 | Cons. | Z1 | Telecom | Cons | DCT&MNH | allElec | SUB.C | RD 01 | TEL |
| B2.1.33 81 26.23 |  | Backfilling & Warrning Tape (88.00% Completed) | 5d | 2026-09-10 A | 2026-09-15 A | B2.1.33 81 26.13 SS | 100% |  |  | Labor [68.61 h]; Foreman [34.3 h]; Operator [137.21 h]; Surveyor [34.3 h]; Surveyor Helper [34.3 h]; Loader [35.2 h]; Water Tanker [35.2 h]; Dump Truck [35.2 h]; Plate Compactor [35.2 h]; Roller Compactor [35.2 h]; (6*50mm+2*32mm) HDPE ducts [42.68] | 18,701.08 | 18,701.08 | 0.00243727564627162 | Cons. | Z1 | Telecom | Cons | DCT&MNH | allElec | SUB.C | RD 01 | TEL |
| B2.1.33 81 26.23_R |  | Backfilling & Warrning Tape(Rem) | 2d | 2026-10-14 A | 2026-10-15 A | B2.1.33 81 26.13_R SS, B2.1.33 81 26.23 | 100% |  |  | Labor [9.36 h]; Foreman [4.68 h]; Operator [18.71 h]; Surveyor [4.68 h]; Surveyor Helper [4.68 h]; Loader [4.8 h]; Water Tanker [4.8 h]; Dump Truck [4.8 h]; Plate Compactor [4.8 h]; Roller Compactor [4.8 h]; (6*50mm+2*32mm) HDPE ducts [5.82] | 2,550.15 | 2,550.15 | 0.00243727564627162 | Cons. | Z1 | Telecom | Cons | DCT&MNH | allElec | SUB.C | RD 01 | TEL |

| ID | WBS | Activity | Duration | Start | Finish | Predecessors | Complete | Total float | Free float | Resources | Cost | Actual cost | Weight % | DMM2 Weekly Progress | DMM2 Zones | Networks & Stations | DMM2 Phases | Networks Components | All Electrical Scope | Subcontractors works | Dmm2 Roads | Yellow Sheet |
| --- | --- | --- | --- | --- | --- | --- | --- | --- | --- | --- | --- | --- | --- | --- | --- | --- | --- | --- | --- | --- | --- | --- |
|  | (6*50mm+4*32mm) | **Size (6*50mm+4*32mm) HDPE ducts** |  | 2026-09-06 | 2026-10-15 |  |  |  |  |  |  |  |  |  |  |  |  |  |  |  |  |  |
| B2.1.33 81 26.31 |  | Excavation (88.00% Completed) | 8.94d | 2026-09-06 A | 2026-09-15 A | B2.1.33 81 26.21 | 100% |  |  | Labor [27.44 h]; Foreman [13.72 h]; Operator [27.44 h]; Surveyor [13.72 h]; Surveyor Helper [13.72 h]; Excavator (With Bucket) [14.08 h]; Water Tanker [14.08 h]; Dump Truck [14.08 h]; Plate Compactor [14.08 h]; (6*50mm+4*32mm) HDPE ducts [13.2] | 6,548.17 | 6,548.17 | 0.00340443051603132 | Cons. | Z1 | Telecom | Cons | DCT&MNH | allElec | SUB.C | RD 01 | TEL |
| B2.1.33 81 26.32 |  | HDPE Pipe, Shuttering, Steel Fixing & Conc. Cast (88.00% Completed) | 5d | 2026-09-10 A | 2026-09-15 A | B2.1.33 81 26.31 SS, B2.1.33 81 26.12 | 100% |  |  | Labor [82.33 h]; Laboratory Officer [41.16 h]; Carpenter [41.16 h]; Steelfixer [41.16 h]; Mason [41.16 h]; Surveyor [41.16 h]; Surveyor Helper [41.16 h]; (6*50mm+4*32mm) HDPE ducts [39.6] | 19,644.52 | 19,644.52 | 0.010213291548094 | Cons. | Z1 | Telecom | Cons | DCT&MNH | allElec | SUB.C | RD 01 | TEL |
| B2.1.33 81 26.33 |  | Backfilling & Warrning Tape (88.00% Completed) | 4d | 2026-09-12 A | 2026-09-15 A | B2.1.33 81 26.32 SS | 100% |  |  | Labor [68.61 h]; Foreman [34.3 h]; Operator [137.21 h]; Surveyor [34.3 h]; Surveyor Helper [34.3 h]; Loader [35.2 h]; Water Tanker [35.2 h]; Dump Truck [35.2 h]; Plate Compactor [35.2 h]; Roller Compactor [35.2 h]; (6*50mm+4*32mm) HDPE ducts [13.2] | 6,548.17 | 6,548.17 | 0.00340443051603132 | Cons. | Z1 | Telecom | Cons | DCT&MNH | allElec | SUB.C | RD 01 | TEL |
| B2.1.33 81 26.31_R |  | Excavation(Rem) | 2d | 2026-10-14 A | 2026-10-15 A | B2.1.33 81 26.21, B2.1.33 81 26.31 | 100% |  |  | Labor [3.74 h]; Foreman [1.87 h]; Operator [3.74 h]; Surveyor [1.87 h]; Surveyor Helper [1.87 h]; Excavator (With Bucket) [1.92 h]; Water Tanker [1.92 h]; Dump Truck [1.92 h]; Plate Compactor [1.92 h]; (6*50mm+4*32mm) HDPE ducts [1.8] | 892.93 | 892.93 | 0.00340443051603132 | Cons. | Z1 | Telecom | Cons | DCT&MNH | allElec | SUB.C | RD 01 | TEL |
| B2.1.33 81 26.32_R |  | HDPE Pipe, Shuttering, Steel Fixing & Conc. Cast(Rem) | 2d | 2026-10-14 A | 2026-10-15 A | B2.1.33 81 26.31_R SS, B2.1.33 81 26.12, B2.1.33 81 26.32 | 100% |  |  | Labor [11.23 h]; Laboratory Officer [5.61 h]; Carpenter [5.61 h]; Steelfixer [5.61 h]; Mason [5.61 h]; Surveyor [5.61 h]; Surveyor Helper [5.61 h]; (6*50mm+4*32mm) HDPE ducts [5.4] | 2,678.8 | 2,678.8 | 0.010213291548094 | Cons. | Z1 | Telecom | Cons | DCT&MNH | allElec | SUB.C | RD 01 | TEL |
| B2.1.33 81 26.33_R |  | Backfilling & Warrning Tape(Rem) | 2d | 2026-10-14 A | 2026-10-15 A | B2.1.33 81 26.32_R SS, B2.1.33 81 26.33 | 100% |  |  | Labor [9.36 h]; Foreman [4.68 h]; Operator [18.71 h]; Surveyor [4.68 h]; Surveyor Helper [4.68 h]; Loader [4.8 h]; Water Tanker [4.8 h]; Dump Truck [4.8 h]; Plate Compactor [4.8 h]; Roller Compactor [4.8 h]; (6*50mm+4*32mm) HDPE ducts [1.8] | 892.93 | 892.93 | 0.00340443051603132 | Cons. | Z1 | Telecom | Cons | DCT&MNH | allElec | SUB.C | RD 01 | TEL |
|  | (2*32mm) | **Size (2*32mm) HDPE ducts** |  | 2026-09-06 | 2026-10-15 |  |  |  |  |  |  |  |  |  |  |  |  |  |  |  |  |  |
| B2.1.33 81 26.41 |  | Excavation (88.00% Completed) | 8.94d | 2026-09-06 A | 2026-09-15 A | B2.1.33 81 26.31 SS | 100% |  |  | Labor [27.44 h]; Foreman [13.72 h]; Operator [27.44 h]; Surveyor [13.72 h]; Surveyor Helper [13.72 h]; Excavator (With Bucket) [14.08 h]; Water Tanker [14.08 h]; Dump Truck [14.08 h]; Plate Compactor [14.08 h]; (2*32mm) HDPE ducts [7.57] | 1,182.76 | 1,182.76 | 0.000194889802563824 | Cons. | Z1 | Telecom | Cons | DCT&MNH | allElec | SUB.C | RD 01 | TEL |
| B2.1.33 81 26.42 |  | HDPE Pipe, Shuttering, Steel Fixing & Conc. Cast (88.00% Completed) | 5d | 2026-09-10 A | 2026-09-15 A | B2.1.33 81 26.41 SS, B2.1.33 81 26.22 | 100% |  |  | Labor [82.33 h]; Laboratory Officer [41.16 h]; Carpenter [41.16 h]; Steelfixer [41.16 h]; Mason [41.16 h]; Surveyor [41.16 h]; Surveyor Helper [41.16 h]; (2*32mm) HDPE ducts [22.7] | 3,548.28 | 3,548.28 | 0.000584669407691468 | Cons. | Z1 | Telecom | Cons | DCT&MNH | allElec | SUB.C | RD 01 | TEL |
| B2.1.33 81 26.43 |  | Backfilling & Warrning Tape (88.00% Completed) | 3d | 2026-09-13 A | 2026-09-15 A | B2.1.33 81 26.42 SS | 100% |  |  | Labor [68.61 h]; Foreman [34.3 h]; Operator [137.21 h]; Surveyor [34.3 h]; Surveyor Helper [34.3 h]; Loader [35.2 h]; Water Tanker [35.2 h]; Dump Truck [35.2 h]; Plate Compactor [35.2 h]; Roller Compactor [35.2 h]; (2*32mm) HDPE ducts [7.57] | 1,182.76 | 1,182.76 | 0.000194889802563824 | Cons. | Z1 | Telecom | Cons | DCT&MNH | allElec | SUB.C | RD 01 | TEL |
| B2.1.33 81 26.41_R |  | Excavation(Rem) | 2d | 2026-10-14 A | 2026-10-15 A | B2.1.33 81 26.31_R SS, B2.1.33 81 26.41 | 100% |  |  | Labor [3.74 h]; Foreman [1.87 h]; Operator [3.74 h]; Surveyor [1.87 h]; Surveyor Helper [1.87 h]; Excavator (With Bucket) [1.92 h]; Water Tanker [1.92 h]; Dump Truck [1.92 h]; Plate Compactor [1.92 h]; (2*32mm) HDPE ducts [1.03] | 161.29 | 161.29 | 0.000194889802563824 | Cons. | Z1 | Telecom | Cons | DCT&MNH | allElec | SUB.C | RD 01 | TEL |
| B2.1.33 81 26.42_R |  | HDPE Pipe, Shuttering, Steel Fixing & Conc. Cast(Rem) | 2d | 2026-10-14 A | 2026-10-15 A | B2.1.33 81 26.41_R SS, B2.1.33 81 26.22, B2.1.33 81 26.42 | 100% |  |  | Labor [11.23 h]; Laboratory Officer [5.61 h]; Carpenter [5.61 h]; Steelfixer [5.61 h]; Mason [5.61 h]; Surveyor [5.61 h]; Surveyor Helper [5.61 h]; (2*32mm) HDPE ducts [3.1] | 483.86 | 483.86 | 0.000584669407691468 | Cons. | Z1 | Telecom | Cons | DCT&MNH | allElec | SUB.C | RD 01 | TEL |
| B2.1.33 81 26.43_R |  | Backfilling & Warrning Tape(Rem) | 2d | 2026-10-14 A | 2026-10-15 A | B2.1.33 81 26.42_R SS, B2.1.33 81 26.43 | 100% |  |  | Labor [9.36 h]; Foreman [4.68 h]; Operator [18.71 h]; Surveyor [4.68 h]; Surveyor Helper [4.68 h]; Loader [4.8 h]; Water Tanker [4.8 h]; Dump Truck [4.8 h]; Plate Compactor [4.8 h]; Roller Compactor [4.8 h]; (2*32mm) HDPE ducts [1.03] | 161.29 | 161.29 | 0.000194889802563824 | Cons. | Z1 | Telecom | Cons | DCT&MNH | allElec | SUB.C | RD 01 | TEL |
|  | (4*32mm) | **Size (4*32mm) HDPE ducts** |  | 2026-09-07 | 2026-10-15 |  |  |  |  |  |  |  |  |  |  |  |  |  |  |  |  |  |
| B2.1.33 81 26.51 |  | Excavation (88.00% Completed) | 7.94d | 2026-09-07 A | 2026-09-15 A | B2.1.33 81 26.41 SS, B2.1.33 81 26.11 | 100% |  |  | Labor [27.44 h]; Foreman [13.72 h]; Operator [27.44 h]; Surveyor [13.72 h]; Surveyor Helper [13.72 h]; Excavator (With Bucket) [14.08 h]; Water Tanker [14.08 h]; Dump Truck [14.08 h]; Plate Compactor [14.08 h]; (4*32mm) HDPE ducts [4.52] | 967.74 | 967.74 | 0.000169743608400202 | Cons. | Z1 | Telecom | Cons | DCT&MNH | allElec | SUB.C | RD 01 | TEL |
| B2.1.33 81 26.52 |  | HDPE Pipe, Shuttering, Steel Fixing & Conc. Cast (88.00% Completed) | 5d | 2026-09-10 A | 2026-09-15 A | B2.1.33 81 26.51 SS | 100% |  |  | Labor [82.33 h]; Laboratory Officer [41.16 h]; Carpenter [41.16 h]; Steelfixer [41.16 h]; Mason [41.16 h]; Surveyor [41.16 h]; Surveyor Helper [41.16 h]; (4*32mm) HDPE ducts [13.55] | 2,903.22 | 2,903.22 | 0.000509230825200604 | Cons. | Z1 | Telecom | Cons | DCT&MNH | allElec | SUB.C | RD 01 | TEL |
| B2.1.33 81 26.53 |  | Backfilling & Warrning Tape (88.00% Completed) | 4d | 2026-09-12 A | 2026-09-15 A | B2.1.33 81 26.52 SS, B2.1.33 81 26.33 SS | 100% |  |  | Labor [68.61 h]; Foreman [34.3 h]; Operator [137.21 h]; Surveyor [34.3 h]; Surveyor Helper [34.3 h]; Loader [35.2 h]; Water Tanker [35.2 h]; Dump Truck [35.2 h]; Plate Compactor [35.2 h]; Roller Compactor [35.2 h]; (4*32mm) HDPE ducts [4.52] | 967.74 | 967.74 | 0.000169743608400202 | Cons. | Z1 | Telecom | Cons | DCT&MNH | allElec | SUB.C | RD 01 | TEL |
| B2.1.33 81 26.51_R |  | Excavation(Rem) | 2d | 2026-10-14 A | 2026-10-15 A | B2.1.33 81 26.41_R SS, B2.1.33 81 26.11, B2.1.33 81 26.51 | 100% |  |  | Labor [3.74 h]; Foreman [1.87 h]; Operator [3.74 h]; Surveyor [1.87 h]; Surveyor Helper [1.87 h]; Excavator (With Bucket) [1.92 h]; Water Tanker [1.92 h]; Dump Truck [1.92 h]; Plate Compactor [1.92 h]; (4*32mm) HDPE ducts [0.62] | 131.96 | 131.96 | 0.000169743608400202 | Cons. | Z1 | Telecom | Cons | DCT&MNH | allElec | SUB.C | RD 01 | TEL |
| B2.1.33 81 26.52_R |  | HDPE Pipe, Shuttering, Steel Fixing & Conc. Cast(Rem) | 2d | 2026-10-14 A | 2026-10-15 A | B2.1.33 81 26.51_R SS, B2.1.33 81 26.52 | 100% |  |  | Labor [11.23 h]; Laboratory Officer [5.61 h]; Carpenter [5.61 h]; Steelfixer [5.61 h]; Mason [5.61 h]; Surveyor [5.61 h]; Surveyor Helper [5.61 h]; (4*32mm) HDPE ducts [1.85] | 395.89 | 395.89 | 0.000509230825200604 | Cons. | Z1 | Telecom | Cons | DCT&MNH | allElec | SUB.C | RD 01 | TEL |
| B2.1.33 81 26.53_R |  | Backfilling & Warrning Tape(Rem) | 2d | 2026-10-14 A | 2026-10-15 A | B2.1.33 81 26.52_R SS, B2.1.33 81 26.33_R SS, B2.1.33 81 26.53 | 100% |  |  | Labor [9.36 h]; Foreman [4.68 h]; Operator [18.71 h]; Surveyor [4.68 h]; Surveyor Helper [4.68 h]; Loader [4.8 h]; Water Tanker [4.8 h]; Dump Truck [4.8 h]; Plate Compactor [4.8 h]; Roller Compactor [4.8 h]; (4*32mm) HDPE ducts [0.62] | 131.96 | 131.96 | 0.000169743608400202 | Cons. | Z1 | Telecom | Cons | DCT&MNH | allElec | SUB.C | RD 01 | TEL |
|  | Demolishing | **Demolishing and Site Clearing** |  | 2026-09-06 | 2026-10-28 |  |  |  |  |  |  |  |  |  |  |  |  |  |  |  |  |  |
| B2.1.02 41 00.011 |  | Excavation (88.00% Completed) | 9d | 2026-09-06 A | 2026-09-15 A | B2.1.33 81 26.51 SS | 100% |  |  | Labor [27.44 h]; Foreman [13.72 h]; Operator [27.44 h]; Surveyor [13.72 h]; Surveyor Helper [13.72 h]; Excavator (With Bucket) [14.08 h]; Water Tanker [14.08 h]; Dump Truck [14.08 h]; Plate Compactor [14.08 h]; Telecommunication Manholes [0.44]; Telecommunication network components [125.95] | 28,452.56 | 28,452.56 | 0.0162551314760231 | Cons. | Z1 | Telecom | Cons |  |  | SUB.C | RD 01 | TEL |
| B2.1.02 41 00.012 |  | Old Manholes Grubbing (88.00% Completed) | 8d | 2026-09-07 A | 2026-09-15 A | B2.1.02 41 00.011 SS | 100% |  |  | Labor [41.16 h]; Operator [41.16 h]; JCB [21.12 h]; Telecommunication Manholes [0.88] | 5,813.36 | 5,813.36 | 0.00332120777581605 | Cons. | Z1 | Telecom | Cons |  |  | SUB.C | RD 01 | TEL |
| B2.1.02 41 00.013 |  | Old Network Components Grubbing (88.00% Completed) | 6d | 2026-09-09 A | 2026-09-15 A | B2.1.02 41 00.011 SS | 100% |  |  | Labor [41.16 h]; Operator [41.16 h]; JCB [21.12 h]; Telecommunication network components [251.89] | 51,088.2 | 51,088.2 | 0.0291870158375046 | Cons. | Z1 | Telecom | Cons |  |  | SUB.C | RD 01 | TEL |
| B2.1.02 41 00.014 |  | New Manholes Installation (88.00% Completed) | 4d | 2026-09-12 A | 2026-09-15 A | B2.1.02 41 00.012 SS | 100% |  |  | Foreman [27.44 h]; Operator [54.89 h]; Boom Truck [28.16 h]; Electrician [27.44 h]; Telecommunication Manholes [1.76] | 11,626.71 | 11,626.71 | 0.00664241555163216 | Cons. | Z1 | Telecom | Cons |  |  | SUB.C | RD 01 | TEL |
| B2.1.02 41 00.015 |  | New Network Components Installation (88.00% Completed) | 3d | 2026-09-13 A | 2026-09-15 A | B2.1.02 41 00.013 SS | 100% |  |  | Foreman [27.44 h]; Operator [54.89 h]; Boom Truck [28.16 h]; Electrician [27.44 h]; Telecommunication network components [503.8] | 102,179.97 | 102,179.97 | 0.058376071013735 | Cons. | Z1 | Telecom | Cons |  |  | SUB.C | RD 01 | TEL |
| B2.1.02 41 00.011_R |  | Excavation(Rem) | 2d | 2026-10-21 | 2026-10-22 | B2.1.33 81 26.51_R SS, B2.1.02 41 00.011 |  | 45.32d | 0d | Labor [3.74 h]; Foreman [1.87 h]; Operator [3.74 h]; Surveyor [1.87 h]; Surveyor Helper [1.87 h]; Excavator (With Bucket) [1.92 h]; Water Tanker [1.92 h]; Dump Truck [1.92 h]; Plate Compactor [1.92 h]; Telecommunication Manholes [0.06]; Telecommunication network components [17.18] | 3,879.89 |  | 0.0162551314760231 | Cons. | Z1 | Telecom | Cons |  |  | SUB.C | RD 01 | TEL |
| B2.1.02 41 00.012_R |  | Old Manholes Grubbing(Rem) | 2d | 2026-10-21 | 2026-10-22 | B2.1.02 41 00.011_R SS, B2.1.02 41 00.012 |  | 45.32d | 0d | Labor [5.61 h]; Operator [5.61 h]; JCB [2.88 h]; Telecommunication Manholes [0.12] | 792.73 |  | 0.00332120777581605 | Cons. | Z1 | Telecom | Cons |  |  | SUB.C | RD 01 | TEL |
| B2.1.02 41 00.013_R |  | Old Network Components Grubbing(Rem) | 2d | 2026-10-21 | 2026-10-22 | B2.1.02 41 00.011_R SS, B2.1.02 41 00.013 |  | 60.32d | 0d | Labor [5.61 h]; Operator [5.61 h]; JCB [2.88 h]; Telecommunication network components [34.35] | 6,966.57 |  | 0.0291870158375046 | Cons. | Z1 | Telecom | Cons |  |  | SUB.C | RD 01 | TEL |
| B2.1.02 41 00.014_R |  | New Manholes Installation(Rem) | 2d | 2026-10-21 | 2026-10-22 | B2.1.02 41 00.012_R SS, B2.1.02 41 00.014 |  | 45.32d | 0d | Foreman [3.74 h]; Operator [7.48 h]; Boom Truck [3.84 h]; Electrician [3.74 h]; Telecommunication Manholes [0.24] | 1,585.46 |  | 0.00664241555163216 | Cons. | Z1 | Telecom | Cons |  |  | SUB.C | RD 01 | TEL |
| B2.1.02 41 00.015_R |  | New Network Components Installation(Rem) | 2d | 2026-10-21 | 2026-10-22 | B2.1.02 41 00.013_R SS, B2.1.02 41 00.015 |  | 60.32d | 18.34d | Foreman [3.74 h]; Operator [7.48 h]; Boom Truck [3.84 h]; Electrician [3.74 h]; Telecommunication network components [68.7] | 13,933.63 |  | 0.058376071013735 | Cons. | Z1 | Telecom | Cons |  |  | SUB.C | RD 01 | TEL |
| B2.1.02 41 00.016 |  | Backfilling & Warrning Tape | 5d | 2026-10-24 | 2026-10-28 | B2.1.02 41 00.014_R |  | 45.32d | 10d | Labor [77.96 h]; Foreman [38.98 h]; Operator [155.92 h]; Surveyor [38.98 h]; Surveyor Helper [38.98 h]; Loader [40 h]; Water Tanker [40 h]; Dump Truck [40 h]; Plate Compactor [40 h]; Roller Compactor [40 h]; Telecommunication Manholes [0.5]; Telecommunication network components [143.13] | 32,332.46 |  | 0.0162551314760231 | Cons. | Z1 | Telecom | Cons |  |  | SUB.C | RD 01 | TEL |

| ID | WBS | Activity | Duration | Start | Finish | Predecessors | Complete | Remaining | Planned start | Planned finish | Total float | Free float | Resources | Cost | Actual cost | Weight % | DMM2 Weekly Progress | DMM2 Zones | Networks & Stations | DMM2 Phases | Dmm2 Roads | Networks Components | Yellow Sheet |
| --- | --- | --- | --- | --- | --- | --- | --- | --- | --- | --- | --- | --- | --- | --- | --- | --- | --- | --- | --- | --- | --- | --- | --- |
|  | Earth & Road Works | **Earth & Road Works** |  | 2025-11-22 | 2026-11-10 |  |  |  |  |  |  |  |  |  |  |  |  |  |  |  |  |  |  |
|  | Earth Works | **Earth Works - Roads** |  | 2025-11-22 | 2025-12-06 |  |  |  |  |  |  |  |  |  |  |  |  |  |  |  |  |  |  |
| B1.2.31 23 23.01.1 |  | Engineering Backfiling | 12.06d | 2025-11-22 A | 2025-12-06 A | B1.2.31 23 16.01.1 SS+2d | 100% |  |  |  |  |  | Embankment backfiling [119933]; Labor [255.15 h]; Foreman [127.57 h]; Operator [255.15 h]; Surveyor [127.57 h]; Surveyor Helper [127.57 h]; Loader [144 h]; Water Tanker [144 h]; Dump Truck [144 h]; Plate Compactor [144 h]; Roller Compactor [144 h] | 3,264,337.63 | 3,264,337.63 | 0.433238584316566 | Cons. | Z1 | Roads | Cons | RD 01 |  |  |
| B1.2.31 23 16.01.1 |  | Roadway Excavation | 3.66d | 2025-11-27 A | 2025-12-01 A | B2.33 71 00.211 | 100% |  |  |  |  |  | Roadway Excavation for cuttings (all types of soil) [39071.5]; Labor [42.52 h]; Foreman [21.26 h]; Operator [42.52 h]; Surveyor [21.26 h]; Surveyor Helper [21.26 h]; Excavator (With Bucket) [24 h]; Water Tanker [24 h]; Dump Truck [24 h] | 583,180.69 | 583,180.69 | 7.12135317238195E-005 | Cons. | Z1 | Roads | Cons | RD 01 |  |  |
|  | Earth Layers | **Earth Layers** |  | 2025-12-24 | 2026-10-27 |  |  |  |  |  |  |  |  |  |  |  |  |  |  |  |  |  |  |
| B1.2.32 11 13.01.1 |  | Subgrade (65.00% Completed) | 213d | 2025-12-24 A | 2026-09-15 A | B1.2.31 23 23.01.1 | 100% |  |  |  |  |  | Subgrade [12851.1]; Labor [141.89 h]; Foreman [70.95 h]; Operator [141.89 h]; Surveyor [70.95 h]; Surveyor Helper [70.95 h]; Grader [72.8 h]; Loader [72.8 h]; Water Tanker [72.8 h]; Dump Truck [72.8 h]; Plate Compactor [72.8 h]; Roller Compactor [72.8 h] | 383,630.5 | 383,630.5 | 0.346095062716074 | Cons. | Z1 | Roads | Cons | RD 01 | Roads | Sub |
| B1.2.32 11 23.01.1 |  | Aggregate Base Course (90.00% Completed) | 116d | 2026-04-29 A | 2026-09-15 A | B1.2.32 11 13.01.1 FF | 100% |  |  |  |  |  | Aggregate base course [11862.5]; Labor [154.36 h]; Foreman [77.18 h]; Operator [154.36 h]; Surveyor [77.18 h]; Surveyor Helper [77.18 h]; Grader [79.2 h]; Loader [79.2 h]; Water Tanker [79.2 h]; Dump Truck [79.2 h]; Plate Compactor [79.2 h]; Roller Compactor [79.2 h] | 1,031,115.62 | 1,031,115.62 | 0.652308565712076 | Cons. | Z1 | Roads | Cons | RD 01 | Roads | Agg |
| B1.2.32 11 13.01.1_R |  | Subgrade(Rem) | 4.9d | 2026-09-26 A | 2026-10-07 A | B1.2.31 23 23.01.1, B1.2.32 11 13.01.1 | 100% |  | 2026-09-16 | 2026-09-21 |  |  | Subgrade [6919.81]; Labor [76.4 h]; Foreman [38.2 h]; Operator [76.4 h]; Surveyor [38.2 h]; Surveyor Helper [38.2 h]; Grader [39.2 h]; Loader [39.2 h]; Water Tanker [39.2 h]; Dump Truck [39.2 h]; Plate Compactor [39.2 h]; Roller Compactor [39.2 h] | 206,570.27 | 206,570.27 | 0.346095062716074 | Cons. | Z1 | Roads | Cons | RD 01 | Roads | Sub |
| B1.2.32 11 23.01.1_R |  | Aggregate Base Course(Rem) | 6d | 2026-10-21 | 2026-10-27 | B1.2.32 11 13.01.1_R FF, B1.2.32 11 23.01.1 |  |  |  |  | 107.32d |  | Aggregate base course [1318.06]; Labor [17.15 h]; Foreman [8.58 h]; Operator [17.15 h]; Surveyor [8.58 h]; Surveyor Helper [8.58 h]; Grader [8.8 h]; Loader [8.8 h]; Water Tanker [8.8 h]; Dump Truck [8.8 h]; Plate Compactor [8.8 h]; Roller Compactor [8.8 h] | 114,568.4 |  | 0.652308565712076 | Cons. | Z1 | Roads | Cons | RD 01 | Roads | Agg |
|  | Interlock | **Interlock** |  | 2026-10-28 | 2026-10-31 |  |  |  |  |  |  |  |  |  |  |  |  |  |  |  |  |  |  |
| B1.2.32 14 13.13.1 |  | 60mm thick - Interlocking Block Pavers | 2d | 2026-10-28 | 2026-10-31 | 10 14 53.08 |  |  |  |  | 22d | 0d | 60mm thick - Interlocking block pavers for sidewalks and medians [4705.49]; Labor [202.7 h]; Foreman [101.35 h]; Mason [101.35 h]; Operator [202.7 h]; JCB [104 h] | 313,988.14 |  | 0.17431792956158 | Cons. | Z1 | Roads | Cons | RD 01 | Roads |  |
|  | Curbstone | **Curbstone** |  | 2026-09-12 | 2026-11-03 |  |  |  |  |  |  |  |  |  |  |  |  |  |  |  |  |  |  |
|  | Pre Install | **Pre-Installation** |  | 2026-09-12 | 2026-10-28 |  |  |  |  |  |  |  |  |  |  |  |  |  |  |  |  |  |  |
| 32 16 131 |  | Excavation (25.00% Completed) | 3.8d | 2026-09-12 A | 2026-09-15 A | B1.2.32 11 23.01.1 FF | 100% |  |  |  |  |  | Curb Stone, Type K1 [190]; Edge Curb, Type K4 [139.42]; Heel Curb, Type K5 [91.21]; Labor [15.59 h]; Foreman [7.8 h]; Operator [15.59 h]; Surveyor [7.8 h]; Surveyor Helper [7.8 h]; JCB [8 h]; Water Tanker [8 h]; Dump Truck [8 h]; Plate Compactor [8 h] | 30,719.26 | 30,719.26 | 0.0693430696671831 | Cons. | Z1 | Roads | Cons | RD 01 | Roads |  |
| 32 16 133 |  | Haunching (25.00% Completed) | 2.8d | 2026-09-13 A | 2026-09-15 A | 32 16 132 FF | 100% |  |  |  |  |  | Curb Stone, Type K1 [190]; Edge Curb, Type K4 [139.42]; Heel Curb, Type K5 [91.21]; Labor [31.18 h]; Carpenter [15.59 h]; Mason [15.59 h]; Surveyor [15.59 h]; Surveyor Helper [15.59 h] | 30,719.26 | 30,719.26 | 0.0693430696671831 | Cons. | Z1 | Roads | Cons | RD 01 | Roads |  |
| 32 16 132 |  | PCC (25.00% Completed) | 1.8d | 2026-09-14 A | 2026-09-15 A | 32 16 131 FF | 100% |  |  |  |  |  | Curb Stone, Type K1 [190]; Edge Curb, Type K4 [139.42]; Heel Curb, Type K5 [91.21]; Labor [31.18 h]; Mason [15.59 h]; Surveyor [15.59 h]; Surveyor Helper [15.59 h] | 30,719.26 | 30,719.26 | 0.0693430696671831 | Cons. | Z1 | Roads | Cons | RD 01 | Roads |  |
| 32 16 133_R |  | Haunching(Rem) | 3d | 2026-10-26 | 2026-10-28 | 32 16 132_R FF, 32 16 133 |  |  |  |  | 46.32d | 1.32d | Curb Stone, Type K1 [569.99]; Edge Curb, Type K4 [418.26]; Heel Curb, Type K5 [273.62]; Labor [93.55 h]; Carpenter [46.78 h]; Mason [46.78 h]; Surveyor [46.78 h]; Surveyor Helper [46.78 h] | 92,157.79 |  | 0.0693430696671831 | Cons. | Z1 | Roads | Cons | RD 01 | Roads |  |
| 32 16 131_R |  | Excavation(Rem) | 2d | 2026-10-27 | 2026-10-28 | B2.31 23 00.41 FF, 32 16 131 |  |  |  |  | 46.32d | 0d | Curb Stone, Type K1 [569.99]; Edge Curb, Type K4 [418.26]; Heel Curb, Type K5 [273.62]; Labor [46.78 h]; Foreman [23.39 h]; Operator [46.78 h]; Surveyor [23.39 h]; Surveyor Helper [23.39 h]; JCB [24 h]; Water Tanker [24 h]; Dump Truck [24 h]; Plate Compactor [24 h] | 92,157.79 |  | 0.0693430696671831 | Cons. | Z1 | Roads | Cons | RD 01 | Roads |  |
| 32 16 132_R |  | PCC(Rem) | 2d | 2026-10-27 | 2026-10-28 | 32 16 131_R FF, 32 16 132 |  |  |  |  | 46.32d | 0d | Curb Stone, Type K1 [569.99]; Edge Curb, Type K4 [418.26]; Heel Curb, Type K5 [273.62]; Labor [93.55 h]; Mason [46.78 h]; Surveyor [46.78 h]; Surveyor Helper [46.78 h] | 92,157.79 |  | 0.0693430696671831 | Cons. | Z1 | Roads | Cons | RD 01 | Roads |  |
|  | Installation | **Installation** |  | 2026-09-14 | 2026-11-03 |  |  |  |  |  |  |  |  |  |  |  |  |  |  |  |  |  |  |
| B1.2.32 16.13.01.1 |  | Curb Stone, Type K1 (10.00% Completed) | 1.8d | 2026-09-14 A | 2026-09-15 A | 32 16 133 SS | 100% |  |  |  |  |  | Curb Stone, Type K1 [227.99]; Labor [14.03 h]; Foreman [7.02 h]; Mason [7.02 h]; Operator [14.03 h]; Surveyor [7.02 h]; Surveyor Helper [7.02 h]; JCB [7.2 h] | 17,215.39 | 17,215.39 | 0.101538755148908 | Cons. | Z1 | Roads | Cons | RD 01 | Roads |  |
| B1.2.32 16.13.01.1_R |  | Curb Stone, Type K1(Rem) | 2d | 2026-10-12 A | 2026-10-31 | B1.2.32 14 13.13.1 FF, 32 16 133_R SS, B1.2.32 16.13.01.1 | 20% | 1.6d | 2026-10-21 | 2026-10-24 | 45d | 0d | Curb Stone, Type K1 [2051.95]; Labor [126.3 h]; Foreman [63.15 h]; Mason [63.15 h]; Operator [126.3 h]; Surveyor [63.15 h]; Surveyor Helper [63.15 h]; JCB [64.8 h] | 154,938.54 | 30,987.71 | 0.101538755148908 | Cons. | Z1 | Roads | Cons | RD 01 | Roads |  |
| B1.2.32 16.13.03.1 |  | Edge Curb, Type K4 | 2d | 2026-10-31 | 2026-11-02 | B1.2.32 14 13.13.1, 32 16 133_R, B1.2.32 16.13.01.1_R |  |  |  |  | 45d | 0d | Edge Curb, Type K4 [1490.3]; Labor [109.15 h]; Foreman [54.57 h]; Mason [54.57 h]; Operator [109.15 h]; Surveyor [54.57 h]; Surveyor Helper [54.57 h]; JCB [56 h] | 112,529.23 |  | 0.061970930768103 | Cons. | Z1 | Roads | Cons | RD 01 | Roads |  |
| B1.2.32 16.13.041 |  | Heel Curb, Type K5 | 1d | 2026-11-02 | 2026-11-03 | B1.2.32 14 13.13.1, 32 16 133_R, B1.2.32 16.13.03.1 |  |  |  |  | 45d | 0d | Heel Curb, Type K5 [1094.48]; Labor [93.55 h]; Foreman [46.78 h]; Mason [46.78 h]; Operator [93.55 h]; Surveyor [46.78 h]; Surveyor Helper [46.78 h]; JCB [48 h] | 70,149.37 |  | 0.0369204704294386 | Cons. | Z1 | Roads | Cons | RD 01 | Roads |  |

| ID | WBS | Activity | Duration | Start | Finish | Predecessors | Complete | Remaining | Planned start | Planned finish | Total float | Free float | Resources | Cost | Actual cost | Weight % | DMM2 Weekly Progress | DMM2 Zones | Networks & Stations | DMM2 Phases | Networks Components | Dmm2 Roads | Yellow Sheet |
| --- | --- | --- | --- | --- | --- | --- | --- | --- | --- | --- | --- | --- | --- | --- | --- | --- | --- | --- | --- | --- | --- | --- | --- |
|  | Finishing | **Finishing** |  | 2026-11-02 | 2026-11-03 |  |  |  |  |  |  |  |  |  |  |  |  |  |  |  |  |  |  |
| 32 16 134 |  | Finishing, Fareface | 1d | 2026-11-02 | 2026-11-03 | B1.2.32 16.13.01.1_R SS, B1.2.32 16.13.03.1 SS, B1.2.32 16.13.041 SS |  |  |  |  | 45d | 6.68d | Curb Stone, Type K1 [506.65]; Edge Curb, Type K4 [371.79]; Heel Curb, Type K5 [243.22]; Labor [93.55 h]; Mason [46.78 h] | 81,918.69 |  | 0.0462290544726273 | Cons. | Z1 | Roads | Cons | Roads | RD 01 |  |
|  | Asphalt Layers | **Asphalt Layers** |  | 2026-05-17 | 2026-10-29 |  |  |  |  |  |  |  |  |  |  |  |  |  |  |  |  |  |  |
| B1.2.32 11 26.01.1 |  | Bituminous Base Course including Prime Coat (MC1) and tack coat (RC2) (92.00% Completed) | 100.03d | 2026-05-17 A | 2026-09-15 A | B1.2.32 11 23.01.1 SS | 100% |  |  |  |  |  | Bituminous base course(Grading I - Class A) [8308.48]; Labor [86.07 h]; Foreman [43.03 h]; Operator [86.07 h]; Surveyor [43.03 h]; Surveyor Helper [43.03 h]; Dump Truck [44.16 h]; Roller Compactor [44.16 h]; MC1/RC2 Sprayer [44.16 h] | 4,566,573.18 | 4,566,573.18 | 2.73814179947943 | Cons. | Z1 | Roads | Cons | Roads | RD 01 | BBC |
| B1.2.32 11 26.01.1_R |  | Bituminous Base Course including Prime Coat (MC1) and tack coat (RC2)(Rem) | 6d | 2026-09-30 A | 2026-10-24 | B1.2.32 11 23.01.1_R SS, B1.2.32 11 26.01.1 | 60% | 2.4d | 2026-09-16 | 2026-09-22 | 50.92d | 0d | Bituminous base course(Grading I - Class A) [722.48]; Labor [7.48 h]; Foreman [3.74 h]; Operator [7.48 h]; Surveyor [3.74 h]; Surveyor Helper [3.74 h]; Dump Truck [3.84 h]; Roller Compactor [3.84 h]; MC1/RC2 Sprayer [3.84 h] | 397,093.32 | 238,255.99 | 2.73814179947943 | Cons. | Z1 | Roads | Cons | Roads | RD 01 | BBC |
| B1.2.32 12 16.01.1 |  | Bituminous concrete Wearing Course, including tack coat (RC2) | 5d | 2026-10-24 | 2026-10-29 | B1.2.32 11 26.01.1_R |  |  |  |  | 50.92d | 0d | Bituminous concrete wearing course, after compaction(Grading I - Class A), including tack coat (RC2) [3304.45]; Labor [62.37 h]; Foreman [31.18 h]; Operator [62.37 h]; Surveyor [31.18 h]; Surveyor Helper [31.18 h]; Dump Truck [32 h]; Roller Compactor [32 h]; MC1/RC2 Sprayer [32 h] | 1,949,677.48 |  | 1.0749549230929 | Cons. | Z1 | Roads | Cons | Roads | RD 01 | BWC |
|  | Pavement Marking | **Pavement Marking** |  | 2026-11-01 | 2026-11-04 |  |  |  |  |  |  |  |  |  |  |  |  |  |  |  |  |  |  |
| B1.2.32 17 23.01.1 |  | Retroreflective Thermoplastic White Traffic lines | 3d | 2026-11-01 | 2026-11-04 | B1.2.32 12 16.01.1, B1.2.32 12 19.13.01, B1.2.32 17 23.02.1 SS |  |  |  |  | 67.92d | 0d | Retroreflective Thermoplastic White Traffic lines [1120.15]; Labor [46.78 h]; Mason [23.39 h]; Road Marking Machine [24 h] | 33,438.58 |  | 0.0168112360219867 | Cons. | Z1 | Roads | Cons | Roads | RD 01 |  |
| B1.2.32 17 23.02.1 |  | Retroreflective Thermoplastic Yellow, Traffic lines | 2d | 2026-11-01 | 2026-11-03 | B1.2.32 12 16.01.1, B1.2.32 12 19.13.01 |  |  |  |  | 67.92d | 0d | Retroreflective Thermoplastic Yellow, Traffic lines [536.87]; Labor [31.18 h]; Mason [15.59 h]; Road Marking Machine [16 h] | 16,026.71 |  | 0.00805742226315319 | Cons. | Z1 | Roads | Cons | Roads | RD 01 |  |
|  | Traffic Signs | **Traffic Signs** |  | 2026-10-28 | 2026-11-10 |  |  |  |  |  |  |  |  |  |  |  |  |  |  |  |  |  |  |
|  | Pre Install | **Pre-Installation** |  | 2026-10-28 | 2026-11-03 |  |  |  |  |  |  |  |  |  |  |  |  |  |  |  |  |  |  |
| 10 14 53.1 |  | Excavation | 2d | 2026-10-28 | 2026-10-31 | B1.2.32 14 13.13.1 SS |  |  |  |  | 22d | 0d | Traffic signs, ground mounted, 1 Sheet Alumenium, (breakaway) Single post [7.45]; Traffic signs, ground mounted, 2 Sheets Alumenium, (breakaway) Single post [0.56]; Ground mounted, 1 Sheet Alumenium powder coated UV printed, Single post [0.4]; Labor [31.18 h]; Foreman [15.59 h]; Operator [31.18 h]; Surveyor [15.59 h]; Surveyor Helper [15.59 h]; JCB [16 h]; Water Tanker [16 h]; Dump Truck [16 h]; Plate Compactor [16 h] | 9,621.07 |  | 0.00483698962560468 | Cons. | Z1 | Roads | Cons | Roads | RD 01 |  |
| 10 14 53.01 |  | Foundation | 3d | 2026-10-31 | 2026-11-03 | 10 14 53.1 |  |  |  |  | 30d | 0d | Traffic signs, ground mounted, 1 Sheet Alumenium, (breakaway) Single post [7.45]; Traffic signs, ground mounted, 2 Sheets Alumenium, (breakaway) Single post [0.56]; Ground mounted, 1 Sheet Alumenium powder coated UV printed, Single post [0.39]; Labor [93.55 h]; Carpenter [46.78 h]; Steelfixer [46.78 h]; Mason [46.78 h]; Surveyor [46.78 h]; Surveyor Helper [46.78 h] | 9,609.91 |  | 0.00483137922697835 | Cons. | Z1 | Roads | Cons | Roads | RD 01 |  |
|  | Installation | **Installation** |  | 2026-11-03 | 2026-11-10 |  |  |  |  |  |  |  |  |  |  |  |  |  |  |  |  |  |  |
| B1.2.10 14 53.011 |  | 1 Sheet Alumenium, Single post | 4d | 2026-11-03 | 2026-11-08 | 10 14 53.01 |  |  |  |  | 30d | 0d | Traffic signs, ground mounted, 1 Sheet Alumenium, (breakaway) Single post [20.7]; Labor [77.96 h]; Foreman [38.98 h]; Operator [77.96 h]; JCB [40 h] | 23,099.98 |  | 0.0116135043426157 | Cons. | Z1 | Roads | Cons | Roads | RD 01 |  |
| B1.2.10 14 14.01.1 |  | Ground mounted, 1 Sheet Alumenium, Single post | 2d | 2026-11-08 | 2026-11-10 | B1.2.32 14 13.13.1, B1.2.10 14 53.021 SS |  |  |  |  | 30d | 2d | Ground mounted, 1 Sheet Alumenium powder coated UV printed, Single post [0.79]; Labor [31.18 h]; Foreman [15.59 h]; Operator [31.18 h]; JCB [16 h] | 876.81 |  | 0.000440817034925952 | Cons. | Z1 | Roads | Cons | Roads | RD 01 |  |
| B1.2.10 14 53.021 |  | 2 Sheet Alumenium, Single post | 2d | 2026-11-08 | 2026-11-10 | B1.2.32 14 13.13.1, B1.2.10 14 53.011 |  |  |  |  | 30d | 0d | Traffic signs, ground mounted, 2 Sheets Alumenium, (breakaway) Single post [1.57]; Labor [46.78 h]; Foreman [23.39 h]; Operator [46.78 h]; JCB [24 h] | 2,420.91 |  | 0.00121711136145962 | Cons. | Z1 | Roads | Cons | Roads | RD 01 |  |
|  | Road Misc. | **Miscellaneous** |  | 2026-10-29 | 2026-11-01 |  |  |  |  |  |  |  |  |  |  |  |  |  |  |  |  |  |  |
| B1.2.32 12 19.13.01 |  | Speed Tables | 2d | 2026-10-29 | 2026-11-01 | B1.2.32 12 16.01.1 |  |  |  |  | 67.92d | 0d | Asphalt speed table [2]; Labor [31.18 h]; Foreman [15.59 h]; Operator [31.18 h]; JCB [16 h]; Roller Compactor [16 h] | 24,408.46 |  | 0.0122713455769057 | Cons. | Z1 | Roads | Cons | Roads | RD 01 |  |
|  | Landscape | **Landscape** |  | 2026-05-14 | 2026-12-15 |  |  |  |  |  |  |  |  |  |  |  |  |  |  |  |  |  |  |
|  | Geotextile | **Geotextile** |  | 2026-11-23 | 2026-12-07 |  |  |  |  |  |  |  |  |  |  |  |  |  |  |  |  |  |  |
| B7.31 32 19.23.01 |  | Geotextile to protect trees planting soil | 6d | 2026-11-23 | 2026-11-30 | B7.32 31 26.03.043, B7.32 31 26.03.023, B7.32 31 26.023 |  |  |  |  | 22d | 0d | Labor [62.37 h]; Foreman [31.18 h]; Landscape Specialist [31.18 h]; Geotextile to protect trees planting soil [1451.32] | 10,194.06 |  | 0.00375732710613742 | Cons. | Z1 | Landscp | Cons | Lndscp | RD 01 | Lndscp |
| B7.31 32 19.23.02 |  | Geotextile below gravel bed | 6d | 2026-11-30 | 2026-12-07 | B7.31 32 19.23.01, B7.32 31 26.03.043, B7.32 31 26.03.023, B7.32 31 26.023 |  |  |  |  | 22d | 2d | Labor [109.15 h]; Foreman [54.57 h]; Landscape Specialist [54.57 h]; Geotextile below gravel bed [12496.8] | 87,777.33 |  | 0.0485450899699918 | Cons. | Z1 | Landscp | Cons | Lndscp | RD 01 | Lndscp |
|  | Steel fence (MODON) | **Steel fence (MODON)** |  | 2026-05-14 | 2026-11-07 |  |  |  |  |  |  |  |  |  |  |  |  |  |  |  |  |  |  |
| B7.32 31 26.021 |  | Earthwork (70.00% Completed) | 103d | 2026-05-14 A | 2026-09-15 A | B1.2.32 11 23.01.1 FF | 100% |  |  |  |  |  | Labor [32.74 h]; Foreman [16.37 h]; Operator [32.74 h]; Surveyor [16.37 h]; Surveyor Helper [16.37 h]; Excavator (With Bucket) [16.8 h]; Water Tanker [16.8 h]; Dump Truck [16.8 h]; Plate Compactor [16.8 h]; Steel fence (MODON) [65.36] | 49,240.21 | 49,240.21 | 0.0387026561597213 | Cons. | Z1 | Landscp | Cons | Fncs&Gt | RD 01 | Mod.Fns |
| B7.32 31 26.022 |  | Foundation (70.00% Completed) | 101d | 2026-05-17 A | 2026-09-15 A | B7.32 31 26.021 SS | 100% |  |  |  |  |  | Labor [43.66 h]; Laboratory Officer [21.83 h]; Carpenter [21.83 h]; Steelfixer [21.83 h]; Mason [21.83 h]; Surveyor [21.83 h]; Surveyor Helper [21.83 h]; Steel fence (MODON) [65.36] | 49,235.39 | 49,235.39 | 0.0386988688364846 | Cons. | Z1 | Landscp | Cons | Fncs&Gt | RD 01 | Mod.Fns |
| B7.32 31 26.021_R |  | Earthwork(Rem) | 5d | 2026-10-25 | 2026-10-31 | 10 14 53.1 FF, B7.32 31 26.021 |  |  |  |  | 22d | 0d | Labor [14.03 h]; Foreman [7.02 h]; Operator [14.03 h]; Surveyor [7.02 h]; Surveyor Helper [7.02 h]; Excavator (With Bucket) [7.2 h]; Water Tanker [7.2 h]; Dump Truck [7.2 h]; Plate Compactor [7.2 h]; Steel fence (MODON) [28.01] | 21,102.95 |  | 0.0387026561597213 | Cons. | Z1 | Landscp | Cons | Fncs&Gt | RD 01 | Mod.Fns |
| B7.32 31 26.022_R |  | Foundation(Rem) | 4.2d | 2026-10-25 | 2026-10-29 | B7.32 31 26.021_R SS, B7.32 31 26.022 |  |  |  |  | 35.8d | 0d | Labor [18.71 h]; Laboratory Officer [9.36 h]; Carpenter [9.36 h]; Steelfixer [9.36 h]; Mason [9.36 h]; Surveyor [9.36 h]; Surveyor Helper [9.36 h]; Steel fence (MODON) [28.01] | 21,100.88 |  | 0.0386988688364846 | Cons. | Z1 | Landscp | Cons | Fncs&Gt | RD 01 | Mod.Fns |
| B7.32 31 26.023 |  | Fence Installation | 7d | 2026-10-29 | 2026-11-07 | B7.32 31 26.022_R |  |  |  |  | 35.8d | 13.8d | Labor [93.55 h]; Foreman [46.78 h]; Welder [46.78 h]; Mason [46.78 h]; Operator [93.55 h]; Boom Truck [48 h]; Welding Machine [48 h]; Steel fence (MODON) [435.76] | 328,263.48 |  | 0.180609870529875 | Cons. | Z1 | Landscp | Cons | Fncs&Gt | RD 01 | Mod.Fns |

| ID | WBS | Activity | Duration | Start | Finish | Predecessors | Complete | Planned start | Planned finish | Total float | Free float | Resources | Cost | Actual cost | Weight % | DMM2 Weekly Progress | DMM2 Zones | Networks & Stations | DMM2 Phases | Networks Components | Dmm2 Roads | Yellow Sheet | UNASCO | Subcontractors works |
| --- | --- | --- | --- | --- | --- | --- | --- | --- | --- | --- | --- | --- | --- | --- | --- | --- | --- | --- | --- | --- | --- | --- | --- | --- |
|  | Gates | **Gates** |  | 2026-10-31 | 2026-11-23 |  |  |  |  |  |  |  |  |  |  |  |  |  |  |  |  |  |  |  |
|  | Gates (1.6x 2.7)m | **Size (1.6x 2.7)m** |  | 2026-10-31 | 2026-11-17 |  |  |  |  |  |  |  |  |  |  |  |  |  |  |  |  |  |  |  |
| B7.32 31 26.03.021 |  | Earthwork | 5d | 2026-10-31 | 2026-11-05 | B7.32 31 26.021_R |  |  |  | 22d | 0d | Labor [31.18 h]; Foreman [15.59 h]; Operator [31.18 h]; Surveyor [15.59 h]; Surveyor Helper [15.59 h]; Excavator (With Bucket) [16 h]; Water Tanker [16 h]; Dump Truck [16 h]; Plate Compactor [16 h]; Size (1.6x 2.7)m [0.15] | 750.95 |  | 0.000377541847489711 | Cons. | Z1 | Landscp | Cons | Fncs&Gt | RD 01 | Mod.Fns |  |  |
| B7.32 31 26.03.022 |  | Foundation | 5d | 2026-11-05 | 2026-11-11 | B7.32 31 26.03.021 |  |  |  | 27d | 0d | Labor [31.18 h]; Laboratory Officer [15.59 h]; Carpenter [15.59 h]; Steelfixer [15.59 h]; Mason [15.59 h]; Surveyor [15.59 h]; Surveyor Helper [15.59 h]; Size (1.6x 2.7)m [0.15] | 750.95 |  | 0.000377541847489711 | Cons. | Z1 | Landscp | Cons | Fncs&Gt | RD 01 | Mod.Fns |  |  |
| B7.32 31 26.03.023 |  | Gate Installation | 5d | 2026-11-11 | 2026-11-17 | B7.32 31 26.03.022 |  |  |  | 27d | 5d | Labor [31.18 h]; Foreman [15.59 h]; Welder [15.59 h]; Mason [15.59 h]; Operator [31.18 h]; Boom Truck [16 h]; Size (1.6x 2.7)m [0.7] | 3,504.46 |  | 0.00176186647013643 | Cons. | Z1 | Landscp | Cons | Fncs&Gt | RD 01 | Mod.Fns |  |  |
|  | Gates (4.5x 2.7)m | **Size (4.5x 2.7)m** |  | 2026-11-05 | 2026-11-23 |  |  |  |  |  |  |  |  |  |  |  |  |  |  |  |  |  |  |  |
| B7.32 31 26.03.041 |  | Earthwork | 5d | 2026-11-05 | 2026-11-11 | B7.32 31 26.03.021 |  |  |  | 22d | 0d | Labor [31.18 h]; Foreman [15.59 h]; Operator [31.18 h]; Surveyor [15.59 h]; Surveyor Helper [15.59 h]; Excavator (With Bucket) [16 h]; Water Tanker [16 h]; Dump Truck [16 h]; Plate Compactor [16 h]; Size (4.5x 2.7)m [0.45] | 6,336.63 |  | 0.00318573751818092 | Cons. | Z1 | Landscp | Cons | Fncs&Gt | RD 01 | Mod.Fns |  |  |
| B7.32 31 26.03.042 |  | Foundation | 5d | 2026-11-11 | 2026-11-17 | B7.32 31 26.03.041 |  |  |  | 22d | 0d | Labor [31.18 h]; Laboratory Officer [15.59 h]; Carpenter [15.59 h]; Steelfixer [15.59 h]; Mason [15.59 h]; Surveyor [15.59 h]; Surveyor Helper [15.59 h]; Size (4.5x 2.7)m [0.45] | 6,336.63 |  | 0.00318573751818092 | Cons. | Z1 | Landscp | Cons | Fncs&Gt | RD 01 | Mod.Fns |  |  |
| B7.32 31 26.03.043 |  | Gate Installation | 5d | 2026-11-17 | 2026-11-23 | B7.32 31 26.03.042 |  |  |  | 22d | 0d | Labor [31.18 h]; Foreman [15.59 h]; Welder [15.59 h]; Mason [15.59 h]; Operator [31.18 h]; Boom Truck [16 h]; Size (4.5x 2.7)m [2.1] | 29,570.93 |  | 0.0148667750848442 | Cons. | Z1 | Landscp | Cons | Fncs&Gt | RD 01 | Mod.Fns |  |  |
|  | Trees | **Trees** |  | 2026-12-09 | 2026-12-15 |  |  |  |  |  |  |  |  |  |  |  |  |  |  |  |  |  |  |  |
| B7.32 93 43.02 |  | Cassia Glauca | 5d | 2026-12-09 | 2026-12-15 | B7.32 31 26.03.043, B7.32 31 26.03.023, B7.32 31 26.023, B7.31 32 19.23.01, B7.31 32 19.23.02, B7.32 93 33.02 |  |  |  | 20d | 3d | Labor [155.92 h]; Operator [155.92 h]; Surveyor [77.96 h]; Surveyor Helper [77.96 h]; JCB [80 h]; Water Tanker [80 h]; Landscape Specialist [77.96 h]; Cassia glauca [154] | 214,176.05 |  | 0.107676929852286 | Cons. | Z1 | Landscp | Cons | Lndscp | RD 01 | Lndscp |  |  |
|  | Service Road | **Service Road** |  | 2026-01-08 | 2026-11-30 |  |  |  |  |  |  |  |  |  |  |  |  |  |  |  |  |  |  |  |
|  | Wet Networks | **Wet Networks** |  | 2026-05-22 | 2026-11-29 |  |  |  |  |  |  |  |  |  |  |  |  |  |  |  |  |  |  |  |
|  | Storm | **Storm Network** |  | 2026-05-22 | 2026-11-29 |  |  |  |  |  |  |  |  |  |  |  |  |  |  |  |  |  |  |  |
|  | GRP | **GRP** |  | 2026-10-06 | 2026-11-22 |  |  |  |  |  |  |  |  |  |  |  |  |  |  |  |  |  |  |  |
|  | ?40011 | **?1300** |  | 2026-10-06 | 2026-11-08 |  |  |  |  |  |  |  |  |  |  |  |  |  |  |  |  |  |  |  |
|  | 3 | **Depth From 3.5m to 4.5m** |  | 2026-10-06 | 2026-11-08 |  |  |  |  |  |  |  |  |  |  |  |  |  |  |  |  |  |  |  |
| B6.33 42 11.26.1 |  | Excavation | 3d | 2026-10-06 A | 2026-10-08 A | B6.33 05 13.081, B1.1.31 23 23.22_R, B1.1.31 23 16.01_R | 100% | 2026-10-19 | 2026-10-22 |  |  | Labor [31.18 h]; Foreman [15.59 h]; Operator [31.18 h]; Surveyor [15.59 h]; Surveyor Helper [15.59 h]; Excavator (With Bucket) [16 h]; Water Tanker [16 h]; Dump Truck [16 h]; Plate Compactor [16 h]; 3.51m - 4.5m [5.34] | 10,125.12 | 10,125.12 | 0.00218442982583375 | Cons. | Z1 | Storm | Cons | GRPs | Serv. Rd | Serv.Rd | CS.UNSC | SUB.C |
| B6.33 42 11.26.2 |  | Sand Bedding | 3d | 2026-10-21 | 2026-10-24 | B6.33 42 11.26.1 |  |  |  | 40.92d | 0d | Labor [31.18 h]; Foreman [15.59 h]; Operator [62.37 h]; Surveyor [15.59 h]; Surveyor Helper [15.59 h]; Loader [16 h]; Water Tanker [16 h]; Dump Truck [16 h]; Plate Compactor [16 h]; 3.51m - 4.5m [1.32] | 2,507.69 |  | 0.000541017619615849 | Cons. | Z1 | Storm | Cons | GRPs | Serv. Rd | Serv.Rd | CS.UNSC | SUB.C |
| B6.33 42 11.26.3 |  | Pipe Laying | 3d | 2026-10-25 | 2026-10-27 | B6.33 42 11.26.2 |  |  |  | 40.92d | 0d | Labor [31.18 h]; Foreman [15.59 h]; Plumber Helper [15.59 h]; Plumber [15.59 h]; Operator [15.59 h]; Surveyor [15.59 h]; Surveyor Helper [15.59 h]; Mobile Crane [16 h]; 3.51m - 4.5m [11.96] | 22,694.58 |  | 0.00489620945752344 | Cons. | Z1 | Storm | Cons | GRPs | Serv. Rd | Serv.Rd | CS.UNSC | SUB.C |
| B6.33 42 11.26.4 |  | Embedment & Test | 4d | 2026-10-28 | 2026-11-01 | B6.33 42 11.26.3 |  |  |  | 40.92d | 0d | Labor [46.86 h]; Foreman [23.43 h]; Plumber Helper [23.43 h]; Plumber [23.43 h]; Operator [46.86 h]; Surveyor [23.43 h]; Surveyor Helper [23.43 h]; Loader [24 h]; Water Tanker [24 h]; Dump Truck [24 h]; Plate Compactor [24 h]; Roller Compactor [24 h]; 3.51m - 4.5m [5.31] | 10,080.91 |  | 0.00217489083085572 | Cons. | Z1 | Storm | Cons | GRPs | Serv. Rd | Serv.Rd | CS.UNSC | SUB.C |
| B6.33 42 11.26.5 |  | Backfilling & Warrning Tape | 6d | 2026-11-02 | 2026-11-08 | B6.33 42 11.26.4, B6.33 42 11.055, B6.33 42 11.0405, B6.33 05 13.084_R |  |  |  | 40.92d | 3d | Labor [77.96 h]; Foreman [38.98 h]; Operator [155.92 h]; Surveyor [38.98 h]; Surveyor Helper [38.98 h]; Loader [40 h]; Water Tanker [40 h]; Dump Truck [40 h]; Plate Compactor [40 h]; Roller Compactor [40 h]; 3.51m - 4.5m [2.66] | 5,040.45 |  | 0.00108744541542785 | Cons. | Z1 | Storm | Cons | GRPs | Serv. Rd | Serv.Rd | CS.UNSC | SUB.C |
|  | ?40012 | **?1400** |  | 2026-10-21 | 2026-11-16 |  |  |  |  |  |  |  |  |  |  |  |  |  |  |  |  |  |  |  |
|  | 1 | **Depth From 3.5m to 4.5m** |  | 2026-10-21 | 2026-11-12 |  |  |  |  |  |  |  |  |  |  |  |  |  |  |  |  |  |  |  |
| B6.33 42 11.30.1 |  | Excavation | 3d | 2026-10-21 | 2026-10-24 | B6.33 42 11.26.1 |  |  |  | 34.92d | 0d | Labor [31.18 h]; Foreman [15.59 h]; Operator [31.18 h]; Surveyor [15.59 h]; Surveyor Helper [15.59 h]; Excavator (With Bucket) [16 h]; Water Tanker [16 h]; Dump Truck [16 h]; Plate Compactor [16 h]; 3.51m - 4.5m [13.79] | 25,566.28 |  | 0.00567753125871943 | Cons. | Z1 | Storm | Cons | GRPs | Serv. Rd | Serv.Rd | CS.UNSC | SUB.C |
| B6.33 42 11.30.2 |  | Sand Bedding | 3d | 2026-10-25 | 2026-10-27 | B6.33 42 11.30.1 |  |  |  | 42.92d | 0d | Labor [31.18 h]; Foreman [15.59 h]; Operator [62.37 h]; Surveyor [15.59 h]; Surveyor Helper [15.59 h]; Loader [16 h]; Water Tanker [16 h]; Dump Truck [16 h]; Plate Compactor [16 h]; 3.51m - 4.5m [3.44] | 6,381.08 |  | 0.00141705213675457 | Cons. | Z1 | Storm | Cons | GRPs | Serv. Rd | Serv.Rd | CS.UNSC | SUB.C |
| B6.33 42 11.30.3 |  | Pipe Laying | 3d | 2026-10-28 | 2026-10-31 | B6.33 42 11.30.2 |  |  |  | 42.92d | 0d | Labor [31.18 h]; Foreman [15.59 h]; Plumber Helper [15.59 h]; Plumber [15.59 h]; Operator [15.59 h]; Surveyor [15.59 h]; Surveyor Helper [15.59 h]; Mobile Crane [16 h]; 3.51m - 4.5m [30.97] | 57,429.68 |  | 0.0127534692307912 | Cons. | Z1 | Storm | Cons | GRPs | Serv. Rd | Serv.Rd | CS.UNSC | SUB.C |
| B6.33 42 11.30.4 |  | Embedment & Test | 5d | 2026-11-01 | 2026-11-05 | B6.33 42 11.30.3 |  |  |  | 42.92d | 0d | Labor [62.37 h]; Foreman [31.18 h]; Plumber Helper [31.18 h]; Plumber [31.18 h]; Operator [62.37 h]; Surveyor [31.18 h]; Surveyor Helper [31.18 h]; Loader [32 h]; Water Tanker [32 h]; Dump Truck [32 h]; Plate Compactor [32 h]; Roller Compactor [32 h]; 3.51m - 4.5m [13.76] | 25,524.3 |  | 0.00566820854701826 | Cons. | Z1 | Storm | Cons | GRPs | Serv. Rd | Serv.Rd | CS.UNSC | SUB.C |
| B6.33 42 11.30.5 |  | Backfilling & Warrning Tape | 6d | 2026-11-07 | 2026-11-12 | B6.33 42 11.30.4, B6.33 42 11.115 |  |  |  | 42.92d | 5d | Labor [77.96 h]; Foreman [38.98 h]; Operator [155.92 h]; Surveyor [38.98 h]; Surveyor Helper [38.98 h]; Loader [40 h]; Water Tanker [40 h]; Dump Truck [40 h]; Plate Compactor [40 h]; Roller Compactor [40 h]; 3.51m - 4.5m [6.88] | 12,762.15 |  | 0.00283410427350916 | Cons. | Z1 | Storm | Cons | GRPs | Serv. Rd | Serv.Rd | CS.UNSC | SUB.C |

| ID | WBS | Activity | Duration | Start | Finish | Predecessors | Total float | Free float | Resources | Cost | Weight % | DMM2 Weekly Progress | DMM2 Zones | Networks & Stations | DMM2 Phases | UNASCO | Networks Components | Subcontractors works | Dmm2 Roads | Yellow Sheet |
| --- | --- | --- | --- | --- | --- | --- | --- | --- | --- | --- | --- | --- | --- | --- | --- | --- | --- | --- | --- | --- |
|  | 4 | **Depth From 2.5m to 3.5m** |  | 2026-10-25 | 2026-11-16 |  |  |  |  |  |  |  |  |  |  |  |  |  |  |  |
| B6.33 42 11.29.1 |  | Excavation | 3d | 2026-10-25 | 2026-10-27 | B6.33 42 11.30.1 | 34.92d | 0d | Labor [30.96 h]; Foreman [15.48 h]; Operator [30.96 h]; Surveyor [15.48 h]; Surveyor Helper [15.48 h]; Excavator (With Bucket) [16 h]; Water Tanker [16 h]; Dump Truck [16 h]; Plate Compactor [16 h]; 2.51m - 3.5m [22.22] | 38,759.54 | 0.00766580356177879 | Cons. | Z1 | Storm | Cons | CS.UNSC | GRPs | SUB.C | Serv. Rd | Serv.Rd |
| B6.33 42 11.29.2 |  | Sand Bedding | 3d | 2026-10-28 | 2026-10-31 | B6.33 42 11.29.1 | 39.92d | 0d | Labor [31.18 h]; Foreman [15.59 h]; Operator [62.37 h]; Surveyor [15.59 h]; Surveyor Helper [15.59 h]; Loader [16 h]; Water Tanker [16 h]; Dump Truck [16 h]; Plate Compactor [16 h]; 2.51m - 3.5m [5.55] | 9,683.6 | 0.00191520724937366 | Cons. | Z1 | Storm | Cons | CS.UNSC | GRPs | SUB.C | Serv. Rd | Serv.Rd |
| B6.33 42 11.29.3 |  | Pipe Laying | 3d | 2026-11-01 | 2026-11-03 | B6.33 42 11.29.2 | 39.92d | 0d | Labor [31.18 h]; Foreman [15.59 h]; Plumber Helper [15.59 h]; Plumber [15.59 h]; Operator [15.59 h]; Surveyor [15.59 h]; Surveyor Helper [15.59 h]; Mobile Crane [16 h]; 2.51m - 3.5m [49.98] | 87,202.67 | 0.0172468143729312 | Cons. | Z1 | Storm | Cons | CS.UNSC | GRPs | SUB.C | Serv. Rd | Serv.Rd |
| B6.33 42 11.29.4 |  | Embedment & Test | 5d | 2026-11-04 | 2026-11-09 | B6.33 42 11.29.3 | 39.92d | 0d | Labor [62.37 h]; Foreman [31.18 h]; Plumber Helper [31.18 h]; Plumber [31.18 h]; Operator [62.37 h]; Surveyor [31.18 h]; Surveyor Helper [31.18 h]; Loader [32 h]; Water Tanker [32 h]; Dump Truck [32 h]; Plate Compactor [32 h]; Roller Compactor [32 h]; 2.51m - 3.5m [22.22] | 38,759.54 | 0.00766580356177879 | Cons. | Z1 | Storm | Cons | CS.UNSC | GRPs | SUB.C | Serv. Rd | Serv.Rd |
| B6.33 42 11.29.5 |  | Backfilling & Warrning Tape | 6d | 2026-11-10 | 2026-11-16 | B6.33 42 11.29.4, B6.33 42 11.34-1.7 | 39.92d | 2d | Labor [62.37 h]; Foreman [31.18 h]; Operator [124.74 h]; Surveyor [31.18 h]; Surveyor Helper [31.18 h]; Loader [32 h]; Water Tanker [32 h]; Dump Truck [32 h]; Plate Compactor [32 h]; Roller Compactor [32 h]; 2.51m - 3.5m [11.12] | 19,392.35 | 0.00383538906303142 | Cons. | Z1 | Storm | Cons | CS.UNSC | GRPs | SUB.C | Serv. Rd | Serv.Rd |
|  | ?400121 | **?1500** |  | 2026-10-28 | 2026-11-22 |  |  |  |  |  |  |  |  |  |  |  |  |  |  |  |
|  | 4 | **Depth From 2.5m to 3.5m** |  | 2026-10-28 | 2026-11-18 |  |  |  |  |  |  |  |  |  |  |  |  |  |  |  |
| B6.33 42 11.33.1 |  | Excavation | 3d | 2026-10-28 | 2026-10-31 | B6.33 42 11.29.1 | 34.92d | 0d | Labor [31.18 h]; Foreman [15.59 h]; Operator [31.18 h]; Surveyor [15.59 h]; Surveyor Helper [15.59 h]; Excavator (With Bucket) [16 h]; Water Tanker [16 h]; Dump Truck [16 h]; Plate Compactor [16 h]; 2.51m - 3.5m [30.32] | 58,672.54 | 0.0124664505738366 | Cons. | Z1 | Storm | Cons | CS.UNSC | GRPs | SUB.C | Serv. Rd | Serv.Rd |
| B6.33 42 11.33.2 |  | Sand Bedding | 3d | 2026-11-01 | 2026-11-03 | B6.33 42 11.33.1 | 37.92d | 0d | Labor [31.18 h]; Foreman [15.59 h]; Operator [62.37 h]; Surveyor [15.59 h]; Surveyor Helper [15.59 h]; Loader [16 h]; Water Tanker [16 h]; Dump Truck [16 h]; Plate Compactor [16 h]; 2.51m - 3.5m [7.33] | 14,192.71 | 0.00311796124261252 | Cons. | Z1 | Storm | Cons | CS.UNSC | GRPs | SUB.C | Serv. Rd | Serv.Rd |
| B6.33 42 11.33.3 |  | Pipe Laying | 3d | 2026-11-04 | 2026-11-07 | B6.33 42 11.33.2 | 37.92d | 0d | Labor [31.18 h]; Foreman [15.59 h]; Plumber Helper [15.59 h]; Plumber [15.59 h]; Operator [15.59 h]; Surveyor [15.59 h]; Surveyor Helper [15.59 h]; Mobile Crane [16 h]; 2.51m - 3.5m [66] | 127,709.86 | 0.0280562567868992 | Cons. | Z1 | Storm | Cons | CS.UNSC | GRPs | SUB.C | Serv. Rd | Serv.Rd |
| B6.33 42 11.33.4 |  | Embedment & Test | 4d | 2026-11-08 | 2026-11-11 | B6.33 42 11.33.3 | 37.92d | 0d | Labor [46.78 h]; Foreman [23.39 h]; Plumber Helper [23.39 h]; Plumber [23.39 h]; Operator [46.78 h]; Surveyor [23.39 h]; Surveyor Helper [23.39 h]; Loader [24 h]; Water Tanker [24 h]; Dump Truck [24 h]; Plate Compactor [24 h]; Roller Compactor [24 h]; 2.51m - 3.5m [29.72] | 57,511.47 | 0.0124718449704501 | Cons. | Z1 | Storm | Cons | CS.UNSC | GRPs | SUB.C | Serv. Rd | Serv.Rd |
| B6.33 42 11.33.5 |  | Backfilling & Warrning Tape | 6d | 2026-11-12 | 2026-11-18 | B6.33 42 11.33.4, B6.33 42 11.26.5 | 37.92d | 0d | Labor [62.37 h]; Foreman [31.18 h]; Operator [124.74 h]; Surveyor [31.18 h]; Surveyor Helper [31.18 h]; Loader [32 h]; Water Tanker [32 h]; Dump Truck [32 h]; Plate Compactor [32 h]; Roller Compactor [32 h]; 2.51m - 3.5m [14.67] | 28,385.43 | 0.00623592248522508 | Cons. | Z1 | Storm | Cons | CS.UNSC | GRPs | SUB.C | Serv. Rd | Serv.Rd |
|  | 1 | **Depth From 3.5m to 4.5m** |  | 2026-11-01 | 2026-11-22 |  |  |  |  |  |  |  |  |  |  |  |  |  |  |  |
| B6.33 42 11.34.1 |  | Excavation | 3d | 2026-11-01 | 2026-11-03 | B6.33 42 11.33.1 | 34.92d | 0d | Labor [31.18 h]; Foreman [15.59 h]; Operator [31.18 h]; Surveyor [15.59 h]; Surveyor Helper [15.59 h]; Excavator (With Bucket) [16 h]; Water Tanker [16 h]; Dump Truck [16 h]; Plate Compactor [16 h]; 3.51m - 4.5m [20.67] | 42,283.32 | 0.00527910967641037 | Cons. | Z1 | Storm | Cons | CS.UNSC | GRPs | SUB.C | Serv. Rd | Serv.Rd |
| B6.33 42 11.34.2 |  | Sand Bedding | 3d | 2026-11-04 | 2026-11-07 | B6.33 42 11.34.1 | 39.92d | 0d | Labor [31.18 h]; Foreman [15.59 h]; Operator [62.37 h]; Surveyor [15.59 h]; Surveyor Helper [15.59 h]; Loader [16 h]; Water Tanker [16 h]; Dump Truck [16 h]; Plate Compactor [16 h]; 3.51m - 4.5m [5.16] | 10,559.15 | 0.00131831910151242 | Cons. | Z1 | Storm | Cons | CS.UNSC | GRPs | SUB.C | Serv. Rd | Serv.Rd |
| B6.33 42 11.34.3 |  | Pipe Laying | 3d | 2026-11-08 | 2026-11-10 | B6.33 42 11.34.2 | 39.92d | 0d | Labor [31.18 h]; Foreman [15.59 h]; Plumber Helper [15.59 h]; Plumber [15.59 h]; Operator [15.59 h]; Surveyor [15.59 h]; Surveyor Helper [15.59 h]; Mobile Crane [16 h]; 3.51m - 4.5m [46.48] | 95,079.06 | 0.0118707051839724 | Cons. | Z1 | Storm | Cons | CS.UNSC | GRPs | SUB.C | Serv. Rd | Serv.Rd |
| B6.33 42 11.34.4 |  | Embedment & Test | 5d | 2026-11-11 | 2026-11-16 | B6.33 42 11.34.3 | 39.92d | 2d | Labor [62.37 h]; Foreman [31.18 h]; Plumber Helper [31.18 h]; Plumber [31.18 h]; Operator [62.37 h]; Surveyor [31.18 h]; Surveyor Helper [31.18 h]; Loader [32 h]; Water Tanker [32 h]; Dump Truck [32 h]; Plate Compactor [32 h]; Roller Compactor [32 h]; 3.51m - 4.5m [20.67] | 42,283.32 | 0.00527910967641037 | Cons. | Z1 | Storm | Cons | CS.UNSC | GRPs | SUB.C | Serv. Rd | Serv.Rd |
| B6.33 42 11.34.5 |  | Backfilling & Warrning Tape | 3d | 2026-11-19 | 2026-11-22 | B6.33 42 11.34.4, B6.33 42 11.33.5, B6.33 42 11.30.5, B6.33 42 11.29.5, B6.33 42 11.35.11_R | 37.92d | 3d | Labor [77.96 h]; Foreman [38.98 h]; Operator [155.92 h]; Surveyor [38.98 h]; Surveyor Helper [38.98 h]; Loader [40 h]; Water Tanker [40 h]; Dump Truck [40 h]; Plate Compactor [40 h]; Roller Compactor [40 h]; 3.51m - 4.5m [10.32] | 21,118.3 | 0.00263663820302486 | Cons. | Z1 | Storm | Cons | CS.UNSC | GRPs | SUB.C | Serv. Rd | Serv.Rd |
|  | Strom Manholes | **Manholes** |  | 2026-11-04 | 2026-11-29 |  |  |  |  |  |  |  |  |  |  |  |  |  |  |  |
|  | 3 | **?2000** |  | 2026-11-04 | 2026-11-29 |  |  |  |  |  |  |  |  |  |  |  |  |  |  |  |
|  | 4 | **Depth From 2.5m to 3.5m** |  | 2026-11-04 | 2026-11-24 |  |  |  |  |  |  |  |  |  |  |  |  |  |  |  |
| B6.33 05 13.07.1 |  | Excavation & Compaction | 3d | 2026-11-04 | 2026-11-07 | B6.33 42 11.34.1 | 34.92d | 0d | Labor [31.18 h]; Foreman [15.59 h]; Operator [31.18 h]; Surveyor [15.59 h]; Surveyor Helper [15.59 h]; Excavator (With Bucket) [16 h]; Water Tanker [16 h]; Dump Truck [16 h]; Plate Compactor [16 h]; Storm MH depth 2.51 - 3.5m [0.63] | 10,765.08 | 0.00208346832855844 | Cons. | Z1 | Storm | Cons | CS.UNSC | Manhole | SUB.C | Serv. Rd | Serv.Rd |
| B6.33 05 13.07.2 |  | Blinding Conc, & RC Base | 4d | 2026-11-08 | 2026-11-11 | B6.33 05 13.07.1 | 35.92d | 0d | Labor [46.78 h]; Foreman [23.39 h]; Laboratory Officer [23.39 h]; Carpenter [23.39 h]; Steelfixer [23.39 h]; Mason [23.39 h]; Storm MH depth 2.51 - 3.5m [0.42] | 7,095.17 | 0.00137319503473171 | Cons. | Z1 | Storm | Cons | CS.UNSC | Manhole | SUB.C | Serv. Rd | Serv.Rd |
| B6.33 05 13.07.3 |  | Manhole Installation | 3d | 2026-11-12 | 2026-11-15 | B6.33 05 13.07.2 | 35.92d | 0d | Labor [31.18 h]; Operator [31.18 h]; Surveyor [15.59 h]; Surveyor Helper [15.59 h]; Boom Truck [16 h]; Mobile Crane [16 h]; Storm MH depth 2.51 - 3.5m [1.9] | 32,404.78 | 0.00625042100380389 | Cons. | Z1 | Storm | Cons | CS.UNSC | Manhole | SUB.C | Serv. Rd | Serv.Rd |
| B6.33 05 13.07.4 |  | Test, Internal Finishing, Benching & Cover | 5d | 2026-11-16 | 2026-11-21 | B6.33 05 13.07.3 | 35.92d | 0d | Labor [62.37 h]; Foreman [31.18 h]; Plumber Helper [31.18 h]; Plumber [31.18 h]; Mason [31.18 h]; Storm MH depth 2.51 - 3.5m [0.42] | 7,095.17 | 0.00137319503473171 | Cons. | Z1 | Storm | Cons | CS.UNSC | Manhole | SUB.C | Serv. Rd | Serv.Rd |
| B6.33 05 13.07.5 |  | Backfilling | 3d | 2026-11-22 | 2026-11-24 | B6.33 05 13.07.4, B6.33 05 13.055, B6.33 05 13.075, B6.33 05 13.085 | 35.92d | 1d | Labor [62.37 h]; Foreman [31.18 h]; Operator [62.37 h]; Surveyor [31.18 h]; Surveyor Helper [31.18 h]; Loader [32 h]; Water Tanker [32 h]; Dump Truck [32 h]; Plate Compactor [32 h]; Storm MH depth 2.51 - 3.5m [0.91] | 15,506.25 | 0.00300107232895791 | Cons. | Z1 | Storm | Cons | CS.UNSC | Manhole | SUB.C | Serv. Rd | Serv.Rd |

| ID | WBS | Activity | Duration | Start | Finish | Predecessors | Complete | Planned start | Planned finish | Total float | Free float | Resources | Cost | Actual cost | Weight % | DMM2 Weekly Progress | DMM2 Zones | Networks & Stations | DMM2 Phases | UNASCO | Networks Components | Subcontractors works | Dmm2 Roads | Yellow Sheet |
| --- | --- | --- | --- | --- | --- | --- | --- | --- | --- | --- | --- | --- | --- | --- | --- | --- | --- | --- | --- | --- | --- | --- | --- | --- |
|  | 1 | **Depth From 3.5m to 4.5m** |  | 2026-11-08 | 2026-11-25 |  |  |  |  |  |  |  |  |  |  |  |  |  |  |  |  |  |  |  |
| B6.33 05 13.08.1 |  | Excavation & Compaction | 3d | 2026-11-08 | 2026-11-10 | B6.33 05 13.07.1 |  |  |  | 34.92d | 0d | Labor [31.18 h]; Foreman [15.59 h]; Operator [31.18 h]; Surveyor [15.59 h]; Surveyor Helper [15.59 h]; Excavator (With Bucket) [16 h]; Water Tanker [16 h]; Dump Truck [16 h]; Plate Compactor [16 h]; Storm MH depth 3.51 -4.5m [0.57] | 12,909.84 |  | 0.00249450617796315 | Cons. | Z1 | Storm | Cons | CS.UNSC | Manhole | SUB.C | Serv. Rd | Serv.Rd |
| B6.33 05 13.08.2 |  | Blinding Conc, & RC Base | 4d | 2026-11-11 | 2026-11-15 | B6.33 05 13.08.1 |  |  |  | 34.92d | 0d | Labor [46.78 h]; Foreman [23.39 h]; Laboratory Officer [23.39 h]; Carpenter [23.39 h]; Steelfixer [23.39 h]; Mason [23.39 h]; Storm MH depth 3.51 -4.5m [0.39] | 8,714.14 |  | 0.00168379167012513 | Cons. | Z1 | Storm | Cons | CS.UNSC | Manhole | SUB.C | Serv. Rd | Serv.Rd |
| B6.33 05 13.08.3 |  | Manhole Installation | 3d | 2026-11-16 | 2026-11-18 | B6.33 05 13.08.2 |  |  |  | 34.92d | 0d | Labor [31.18 h]; Operator [31.18 h]; Surveyor [15.59 h]; Surveyor Helper [15.59 h]; Boom Truck [16 h]; Mobile Crane [16 h]; Storm MH depth 3.51 -4.5m [1.87] | 42,079.22 |  | 0.00813076259576856 | Cons. | Z1 | Storm | Cons | CS.UNSC | Manhole | SUB.C | Serv. Rd | Serv.Rd |
| B6.33 05 13.08.4 |  | Test, Internal Finishing, Benching & Cover | 3d | 2026-11-19 | 2026-11-22 | B6.33 05 13.08.3 |  |  |  | 34.92d | 0d | Labor [77.96 h]; Foreman [38.98 h]; Plumber Helper [38.98 h]; Plumber [38.98 h]; Mason [38.98 h]; Storm MH depth 3.51 -4.5m [0.39] | 8,714.14 |  | 0.00168379167012513 | Cons. | Z1 | Storm | Cons | CS.UNSC | Manhole | SUB.C | Serv. Rd | Serv.Rd |
| B6.33 05 13.08.5 |  | Backfilling | 3d | 2026-11-23 | 2026-11-25 | B6.33 05 13.08.4, B6.33 05 13.05.06_R, B6.33 05 13.07.06_R |  |  |  | 34.92d | 0d | Labor [62.37 h]; Foreman [31.18 h]; Operator [62.37 h]; Surveyor [31.18 h]; Surveyor Helper [31.18 h]; Loader [32 h]; Water Tanker [32 h]; Dump Truck [32 h]; Plate Compactor [32 h]; Storm MH depth 3.51 -4.5m [0.78] | 17,428.33 |  | 0.00336759197047231 | Cons. | Z1 | Storm | Cons | CS.UNSC | Manhole | SUB.C | Serv. Rd | Serv.Rd |
|  | 3 | **Depth From 4.5m to 5.5m** |  | 2026-11-11 | 2026-11-29 |  |  |  |  |  |  |  |  |  |  |  |  |  |  |  |  |  |  |  |
| B6.33 05 13.09.1 |  | Excavation & Compaction | 3d | 2026-11-11 | 2026-11-14 | B6.33 05 13.08.1 |  |  |  | 35.92d | 0d | Labor [31.18 h]; Foreman [15.59 h]; Operator [31.18 h]; Surveyor [15.59 h]; Surveyor Helper [15.59 h]; Excavator (With Bucket) [16 h]; Water Tanker [16 h]; Dump Truck [16 h]; Plate Compactor [16 h]; MH depth 4.51 -5.5m [0.14] | 3,387.08 |  | 0.000656023273078834 | Cons. | Z1 | Storm | Cons | CS.UNSC | Manhole | SUB.C | Serv. Rd | Serv.Rd |
| B6.33 05 13.09.2 |  | Blinding Conc, & RC Base | 4d | 2026-11-15 | 2026-11-18 | B6.33 05 13.09.1 |  |  |  | 35.92d | 0d | Labor [46.78 h]; Foreman [23.39 h]; Laboratory Officer [23.39 h]; Carpenter [23.39 h]; Steelfixer [23.39 h]; Mason [23.39 h]; MH depth 4.51 -5.5m [0.1] | 2,370.95 |  | 0.000459216291155183 | Cons. | Z1 | Storm | Cons | CS.UNSC | Manhole | SUB.C | Serv. Rd | Serv.Rd |
| B6.33 05 13.09.3 |  | Manhole Installation | 2d | 2026-11-19 | 2026-11-21 | B6.33 05 13.09.2 |  |  |  | 35.92d | 0d | Labor [46.78 h]; Operator [46.78 h]; Surveyor [23.39 h]; Surveyor Helper [23.39 h]; Boom Truck [24 h]; Mobile Crane [24 h]; MH depth 4.51 -5.5m [0.47] | 11,040.03 |  | 0.00213828126316598 | Cons. | Z1 | Storm | Cons | CS.UNSC | Manhole | SUB.C | Serv. Rd | Serv.Rd |
| B6.33 05 13.09.4 |  | Test, Internal Finishing, Benching & Cover | 3d | 2026-11-22 | 2026-11-24 | B6.33 05 13.09.3 |  |  |  | 35.92d | 1d | Labor [77.96 h]; Foreman [38.98 h]; Plumber Helper [38.98 h]; Plumber [38.98 h]; Mason [38.98 h]; MH depth 4.51 -5.5m [0.1] | 2,370.95 |  | 0.000459216291155183 | Cons. | Z1 | Storm | Cons | CS.UNSC | Manhole | SUB.C | Serv. Rd | Serv.Rd |
| B6.33 05 13.09.5 |  | Backfilling | 3d | 2026-11-26 | 2026-11-29 | B6.33 05 13.09.4, B6.33 05 13.08.5, B6.33 05 13.07.5, B6.33 42 11.34.5 |  |  |  | 34.92d | 0d | Labor [77.96 h]; Foreman [38.98 h]; Operator [77.96 h]; Surveyor [38.98 h]; Surveyor Helper [38.98 h]; Loader [40 h]; Water Tanker [40 h]; Dump Truck [40 h]; Plate Compactor [40 h]; MH depth 4.51 -5.5m [0.19] | 4,403.2 |  | 0.000852830255002487 | Cons. | Z1 | Storm | Cons | CS.UNSC | Manhole | SUB.C | Serv. Rd | Serv.Rd |
|  | Catch Basins | **Catch Basins** |  | 2026-05-22 | 2026-11-23 |  |  |  |  |  |  |  |  |  |  |  |  |  |  |  |  |  |  |  |
|  | Sing | **Single** |  | 2026-05-22 | 2026-11-15 |  |  |  |  |  |  |  |  |  |  |  |  |  |  |  |  |  |  |  |
| B6.33 05 63.07.1 |  | Excavation, Compaction & Vapour Barrier (4.76% Completed) | 96d | 2026-05-22 A | 2026-09-15 A | B1.2.32 11 23.01.1 FF | 100% | 2026-05-23 | 2026-09-15 |  |  | Labor [1.48 h]; Foreman [0.74 h]; Operator [1.48 h]; Surveyor [0.74 h]; Surveyor Helper [0.74 h]; Excavator (With Bucket) [0.76 h]; Water Tanker [0.76 h]; Dump Truck [0.76 h]; Roller Compactor [0.76 h]; Single Catch basin [0.14] | 640.99 | 640.99 | 0.00295277448760277 | Cons. | Z1 | Storm | Cons | CS.UNSC | CBs | SUB.C | Serv. Rd | Serv.Rd |
| B6.33 05 63.07.2 |  | Blinding Conc. (4.76% Completed) | 95d | 2026-05-24 A | 2026-09-15 A | B6.33 05 63.07.1 SS | 100% |  |  |  |  | Labor [1.48 h]; Foreman [0.74 h]; Laboratory Officer [0.74 h]; Carpenter [0.74 h]; Steelfixer [0.74 h]; Mason [0.74 h]; Single Catch basin [0.09] | 428.26 | 428.26 | 0.00197281439564727 | Cons. | Z1 | Storm | Cons | CS.UNSC | CBs | SUB.C | Serv. Rd | Serv.Rd |
| B6.33 05 63.07.3 |  | Catch Basin Installation (4.76% Completed) | 90d | 2026-06-03 A | 2026-09-15 A | B6.33 05 63.07.2 SS | 100% |  |  |  |  | Labor [2.23 h]; Foreman [1.11 h]; Carpenter [1.11 h]; Steelfixer [1.11 h]; Mason [1.11 h]; Operator [2.23 h]; Surveyor [1.11 h]; Surveyor Helper [1.11 h]; Boom Truck [1.14 h]; Single Catch basin [0.43] | 1,922.98 | 1,922.98 | 0.00885832346280832 | Cons. | Z1 | Storm | Cons | CS.UNSC | CBs | SUB.C | Serv. Rd | Serv.Rd |
| B6.33 05 63.07.4 |  | Backfilling, DI Frame & Grate Cover Fixing | 3d | 2026-10-25 | 2026-10-27 | B6.33 42 11.35.12, B6.33 05 40.01.760_R, B6.33 05 63.08.4 |  |  |  | 62.92d | 28d | Labor [77.96 h]; Foreman [38.98 h]; Operator [77.96 h]; Surveyor [38.98 h]; Surveyor Helper [38.98 h]; Loader [40 h]; Water Tanker [40 h]; Dump Truck [40 h]; Plate Compactor [40 h]; Single Catch basin [5.96] | 26,921.76 |  | 0.00590554897520555 | Cons. | Z1 | Storm | Cons | CS.UNSC | CBs | SUB.C | Serv. Rd | Serv.Rd |
| B6.33 05 63.07.1_R |  | Excavation, Compaction & Vapour Barrier(Rem) | 3d | 2026-11-11 | 2026-11-14 | B6.33 05 13.09.1 FF, B6.33 05 63.07.1 |  |  |  | 84.32d | 0d | Labor [29.7 h]; Foreman [14.85 h]; Operator [29.7 h]; Surveyor [14.85 h]; Surveyor Helper [14.85 h]; Excavator (With Bucket) [15.24 h]; Water Tanker [15.24 h]; Dump Truck [15.24 h]; Roller Compactor [15.24 h]; Single Catch basin [2.84] | 12,819.88 |  | 0.00295277448760277 | Cons. | Z1 | Storm | Cons | CS.UNSC | CBs | SUB.C | Serv. Rd | Serv.Rd |
| B6.33 05 63.07.2_R |  | Blinding Conc.(Rem) | 3d | 2026-11-11 | 2026-11-14 | B6.33 05 63.07.1_R SS, B6.33 05 63.07.2 |  |  |  | 91.32d | 0d | Labor [29.7 h]; Foreman [14.85 h]; Laboratory Officer [14.85 h]; Carpenter [14.85 h]; Steelfixer [14.85 h]; Mason [14.85 h]; Single Catch basin [1.89] | 8,565.25 |  | 0.00197281439564727 | Cons. | Z1 | Storm | Cons | CS.UNSC | CBs | SUB.C | Serv. Rd | Serv.Rd |
| B6.33 05 63.07.3_R |  | Catch Basin Installation(Rem) | 4d | 2026-11-11 | 2026-11-15 | B6.33 05 63.07.2_R SS, B6.33 05 63.07.3 |  |  |  | 91.32d |  | Labor [44.55 h]; Foreman [22.27 h]; Carpenter [22.27 h]; Steelfixer [22.27 h]; Mason [22.27 h]; Operator [44.55 h]; Surveyor [22.27 h]; Surveyor Helper [22.27 h]; Boom Truck [22.86 h]; Single Catch basin [8.51] | 38,459.65 |  | 0.00885832346280832 | Cons. | Z1 | Storm | Cons | CS.UNSC | CBs | SUB.C | Serv. Rd | Serv.Rd |
|  | Dou | **Double** |  | 2026-10-21 | 2026-11-23 |  |  |  |  |  |  |  |  |  |  |  |  |  |  |  |  |  |  |  |
| B6.33 05 63.08.4 |  | Backfilling, DI Frame & Grate Cover Fixing | 3d | 2026-10-21 | 2026-10-24 | B6.33 42 11.36.12, B6.33 42 11.35.12 |  |  |  | 62.92d | 0d | Labor [62.37 h]; Foreman [31.18 h]; Operator [62.37 h]; Surveyor [31.18 h]; Surveyor Helper [31.18 h]; Loader [32 h]; Water Tanker [32 h]; Dump Truck [32 h]; Plate Compactor [32 h]; Double Catch basin [1.19] | 10,516.1 |  | 0.00175890508448974 | Cons. | Z1 | Storm | Cons | CS.UNSC | CBs | SUB.C | Serv. Rd | Serv.Rd |
| B6.33 05 63.08.1 |  | Excavation, Compaction & Vapour Barrier | 3d | 2026-11-15 | 2026-11-17 | B6.33 05 63.07.1_R, B1.1.31 23 19.02 |  |  |  | 84.32d | 0d | Labor [31.18 h]; Foreman [15.59 h]; Operator [31.18 h]; Surveyor [15.59 h]; Surveyor Helper [15.59 h]; Excavator (With Bucket) [16 h]; Water Tanker [16 h]; Dump Truck [16 h]; Roller Compactor [16 h]; Double Catch basin [0.6] | 5,258.04 |  | 0.000879450288447266 | Cons. | Z1 | Storm | Cons | CS.UNSC | CBs | SUB.C | Serv. Rd | Serv.Rd |
| B6.33 05 63.08.2 |  | Blinding Conc. | 3d | 2026-11-18 | 2026-11-21 | B6.33 05 63.08.1, B6.33 42 11.31-1 1 |  |  |  | 84.32d | 0d | Labor [31.18 h]; Foreman [15.59 h]; Laboratory Officer [15.59 h]; Carpenter [15.59 h]; Steelfixer [15.59 h]; Mason [15.59 h]; Double Catch basin [0.39] | 3,455.28 |  | 0.000577924475265344 | Cons. | Z1 | Storm | Cons | CS.UNSC | CBs | SUB.C | Serv. Rd | Serv.Rd |
| B6.33 05 63.08.3 |  | Catch Basin Installation | 2d | 2026-11-22 | 2026-11-23 | B6.33 05 63.08.2, DMM2-Proc-Delv-5758_R |  |  |  | 84.32d |  | Labor [46.78 h]; Foreman [23.39 h]; Carpenter [23.39 h]; Steelfixer [23.39 h]; Mason [23.39 h]; Operator [46.78 h]; Surveyor [23.39 h]; Surveyor Helper [23.39 h]; Boom Truck [24 h]; Double Catch basin [1.81] | 15,924.38 |  | 0.00266348484222734 | Cons. | Z1 | Storm | Cons | CS.UNSC | CBs | SUB.C | Serv. Rd | Serv.Rd |

| ID | WBS | Activity | Duration | Start | Finish | Predecessors | Complete | Planned start | Planned finish | Total float | Free float | Resources | Cost | Actual cost | Weight % | DMM2 Weekly Progress | DMM2 Zones | Networks & Stations | DMM2 Phases | UNASCO | Networks Components | Subcontractors works | Dmm2 Roads | Yellow Sheet | All Electrical Scope |
| --- | --- | --- | --- | --- | --- | --- | --- | --- | --- | --- | --- | --- | --- | --- | --- | --- | --- | --- | --- | --- | --- | --- | --- | --- | --- |
|  | UPVC | **UPVC** |  | 2026-06-01 | 2026-09-30 |  |  |  |  |  |  |  |  |  |  |  |  |  |  |  |  |  |  |  |  |
|  | UPVC300 | **?300 From 0.0 to 1.5m** |  | 2026-06-01 | 2026-09-29 |  |  |  |  |  |  |  |  |  |  |  |  |  |  |  |  |  |  |  |  |
| B6.33 42 11.35.11 |  | Catch Basin Opening Prep. (3.81% Completed) | 92d | 2026-06-01 A | 2026-09-15 A | B6.33 05 63.07.3 SS | 100% |  |  |  |  | Labor [1.19 h]; Foreman [0.59 h]; Plumber Helper [0.59 h]; Plumber [0.59 h]; less than 1.5 [1.78] | 1,068.24 | 1,068.24 | 0.0150835855285905 | Cons. | Z1 | Storm | Cons | CS.UNSC | UPVC | SUB.C | Serv. Rd | Serv.Rd |  |
| B6.33 42 11.35.12 |  | Fittings & Pipe Installation | 11.81d | 2026-06-01 A | 2026-06-14 A | B6.33 42 11.35.11 SS+1d, B6.33 42 11.35.11 FF+1d | 100% |  |  |  |  | Labor [56.7 h]; Foreman [28.35 h]; Plumber Helper [28.35 h]; Plumber [28.35 h]; Surveyor [28.35 h]; Surveyor Helper [28.35 h]; less than 1.5 [186.46] | 112,143.85 | 112,143.85 | 0.0603343421083148 | Cons. | Z1 | Storm | Cons | CS.UNSC | UPVC | SUB.C | Serv. Rd | Serv.Rd |  |
| B6.33 42 11.35.11_R |  | Catch Basin Opening Prep.(Rem) | 3d | 2026-09-26 A | 2026-09-29 A | B6.33 05 63.07.3_R SS, B6.33 42 11.35.11 | 100% | 2026-10-26 | 2026-10-28 |  |  | Labor [30 h]; Foreman [15 h]; Plumber Helper [15 h]; Plumber [15 h]; less than 1.5 [44.84] | 26,967.73 | 26,967.73 | 0.0150835855285905 | Cons. | Z1 | Storm | Cons | CS.UNSC | UPVC | SUB.C | Serv. Rd | Serv.Rd |  |
|  | UPVC3001 | **?400 From 0.0 to 1.5m** |  | 2026-09-20 | 2026-09-30 |  |  |  |  |  |  |  |  |  |  |  |  |  |  |  |  |  |  |  |  |
| B6.33 42 11.36.11 |  | Catch Basin Opening Prep. | 3d | 2026-09-20 A | 2026-09-27 A | B6.33 05 63.08.3 | 100% | 2026-11-08 | 2026-11-10 |  |  | Labor [31.18 h]; Foreman [15.59 h]; Plumber Helper [15.59 h]; Plumber [15.59 h]; less than 1.5 [46.62] | 28,035.96 | 28,035.96 | 0.0150835855285905 | Cons. | Z1 | Storm | Cons | CS.UNSC | UPVC | SUB.C | Serv. Rd | Serv.Rd |  |
| B6.33 42 11.36.12 |  | Fittings & Pipe Installation | 2d | 2026-09-26 A | 2026-09-30 A | B6.33 42 11.36.11 | 100% | 2026-11-11 | 2026-11-12 |  |  | Labor [62.37 h]; Foreman [31.18 h]; Plumber Helper [31.18 h]; Plumber [31.18 h]; Surveyor [31.18 h]; Surveyor Helper [31.18 h]; less than 1.5 [186.46] | 112,143.85 | 112,143.85 | 0.0603343421083148 | Cons. | Z1 | Storm | Cons | CS.UNSC | UPVC | SUB.C | Serv. Rd | Serv.Rd |  |
|  | SDS1 | **Dry Networks** |  | 2026-10-06 | 2026-11-30 |  |  |  |  |  |  |  |  |  |  |  |  |  |  |  |  |  |  |  |  |
|  | SL | **Street Lighting** |  | 2026-10-06 | 2026-11-30 |  |  |  |  |  |  |  |  |  |  |  |  |  |  |  |  |  |  |  |  |
|  | Duct Banks | **Duct Banks** |  | 2026-10-29 | 2026-11-26 |  |  |  |  |  |  |  |  |  |  |  |  |  |  |  |  |  |  |  |  |
|  | 2 Way | **2 Way** |  | 2026-10-29 | 2026-11-03 |  |  |  |  |  |  |  |  |  |  |  |  |  |  |  |  |  |  |  |  |
| B2.33 71 00 02 011 |  | Excavation | 2d | 2026-10-29 | 2026-10-31 | B2.33 71 19 13 |  |  |  | 92.32d | 0d | Labor [31.18 h]; Foreman [15.59 h]; Operator [31.18 h]; Surveyor [15.59 h]; Surveyor Helper [15.59 h]; Excavator (With Bucket) [16 h]; Water Tanker [16 h]; Dump Truck [16 h]; Plate Compactor [16 h]; SL Excavation for Trench size 40cm wide and 65cm deep (for 1 cable); Road Crossing Duct for Street Lighting cables UPVC (2xDia. 110mm) [33.4] | 9,208.14 |  | 0.0034843117378167 | Cons. | Z1 | SL | Cons |  | Cables | SUB.C | Serv. Rd | Serv.Rd | allElec |
| B2.33 71 00 02 012 |  | Shuttering, Steel Fixing Incl. UPVC Pipe & Conc. Cast | 3d | 2026-11-01 | 2026-11-03 | B2.33 71 00 02 011 |  |  |  | 101.32d | 0d | Labor [93.55 h]; Laboratory Officer [46.78 h]; Carpenter [46.78 h]; Steelfixer [46.78 h]; Mason [46.78 h]; Surveyor [46.78 h]; Surveyor Helper [46.78 h]; SL Excavation for Trench size 40cm wide and 65cm deep (for 1 cable); Road Crossing Duct for Street Lighting cables UPVC (2xDia. 110mm) [100.2] | 27,624.41 |  | 0.0104529352134501 | Cons. | Z1 | SL | Cons |  | Cables | SUB.C | Serv. Rd | Serv.Rd | allElec |
| B2.33 71 00 02 013 |  | Backfilling & Warrning Tape | 3d | 2026-11-01 | 2026-11-03 | B2.33 71 00 02 012 SS, B6.33 42 11.35.12 |  |  |  | 101.32d |  | Labor [62.37 h]; Foreman [31.18 h]; Operator [124.74 h]; Surveyor [31.18 h]; Surveyor Helper [31.18 h]; Loader [32 h]; Water Tanker [32 h]; Dump Truck [32 h]; Plate Compactor [32 h]; Roller Compactor [32 h]; SL Excavation for Trench size 40cm wide and 65cm deep (for 1 cable); Road Crossing Duct for Street Lighting cables UPVC (2xDia. 110mm) [33.4] | 9,208.14 |  | 0.0034843117378167 | Cons. | Z1 | SL | Cons |  | Cables | SUB.C | Serv. Rd | Serv.Rd | allElec |
|  | 4 Way | **4 Way** |  | 2026-11-01 | 2026-11-26 |  |  |  |  |  |  |  |  |  |  |  |  |  |  |  |  |  |  |  |  |
| B2.33 71 00 02 021 |  | Excavation | 2d | 2026-11-01 | 2026-11-02 | B2.33 71 00 02 011 |  |  |  | 92.32d | 0d | Labor [31.18 h]; Foreman [15.59 h]; Operator [31.18 h]; Surveyor [15.59 h]; Surveyor Helper [15.59 h]; Excavator (With Bucket) [16 h]; Water Tanker [16 h]; Dump Truck [16 h]; Plate Compactor [16 h]; SL Excavation for Trench size 60cm wide and 65cm deep ( for 2 cables); Road Crossing Duct for Street Lighting cables UPVC (4xDia. 110mm) [8.92] | 3,759.25 |  | 0.00153753780264308 | Cons. | Z1 | SL | Cons |  | Cables | SUB.C | Serv. Rd | Serv.Rd | allElec |
| B2.33 71 00 02 022 |  | Shuttering, Steel Fixing Incl. UPVC Pipe & Conc. Cast | 3d | 2026-11-03 | 2026-11-05 | B2.33 71 00 02 021 |  |  |  | 93.32d | 14.32d | Labor [93.55 h]; Laboratory Officer [46.78 h]; Carpenter [46.78 h]; Steelfixer [46.78 h]; Mason [46.78 h]; Surveyor [46.78 h]; Surveyor Helper [46.78 h]; SL Excavation for Trench size 60cm wide and 65cm deep ( for 2 cables); Road Crossing Duct for Street Lighting cables UPVC (4xDia. 110mm) [26.76] | 11,277.76 |  | 0.00461261340792926 | Cons. | Z1 | SL | Cons |  | Cables | SUB.C | Serv. Rd | Serv.Rd | allElec |
| B2.33 71 00 02 023 |  | Backfilling & Warrning Tape | 3d | 2026-11-23 | 2026-11-26 | B2.33 71 00 02 022, B6.33 42 11.35.12, B2.33 71 16.66 |  |  |  | 79d | 0d | Labor [62.37 h]; Foreman [31.18 h]; Operator [124.74 h]; Surveyor [31.18 h]; Surveyor Helper [31.18 h]; Loader [32 h]; Water Tanker [32 h]; Dump Truck [32 h]; Plate Compactor [32 h]; Roller Compactor [32 h]; SL Excavation for Trench size 60cm wide and 65cm deep ( for 2 cables); Road Crossing Duct for Street Lighting cables UPVC (4xDia. 110mm) [8.92] | 3,759.25 |  | 0.00153753780264308 | Cons. | Z1 | SL | Cons |  | Cables | SUB.C | Serv. Rd | Serv.Rd | allElec |
|  | Drawpits | **Drawpits** |  | 2026-11-03 | 2026-11-09 |  |  |  |  |  |  |  |  |  |  |  |  |  |  |  |  |  |  |  |  |
| B2.33 71 00 02 041 |  | Excavation | 2d | 2026-11-03 | 2026-11-04 | B2.33 71 00 02 021, B2.33 71 00 02 011 |  |  |  | 92.32d | 0d | Labor [31.18 h]; Foreman [15.59 h]; Operator [31.18 h]; Surveyor [15.59 h]; Surveyor Helper [15.59 h]; Excavator (With Bucket) [16 h]; Water Tanker [16 h]; Dump Truck [16 h]; Plate Compactor [16 h]; Drawpit with medium duty steel cover, size600x600x900mm, [2.43] | 14,384.57 |  | 0.0025348715507172 | Cons. | Z1 | SL | Cons |  | Cables | SUB.C | Serv. Rd | Serv.Rd | allElec |
| B2.33 71 00 02 042 |  | Drawpits Installation | 2d | 2026-11-05 | 2026-11-07 | B2.33 71 00 02 041, DMM2-Proc-Delv-7241 |  |  |  | 92.32d | 0d | Labor [31.18 h]; Laboratory Officer [15.59 h]; Carpenter [15.59 h]; Steelfixer [15.59 h]; Mason [15.59 h]; Surveyor [15.59 h]; Surveyor Helper [15.59 h]; Drawpit with medium duty steel cover, size600x600x900mm, [7.28] | 43,153.72 |  | 0.0076046146521516 | Cons. | Z1 | SL | Cons |  | Cables | SUB.C | Serv. Rd | Serv.Rd | allElec |
| B2.33 71 00 02 043 |  | Backfilling & Warrning Tape | 2d | 2026-11-08 | 2026-11-09 | B2.33 71 00 02 042, B6.33 42 11.35.12 |  |  |  | 92.32d | 3d | Labor [31.18 h]; Foreman [15.59 h]; Operator [62.37 h]; Surveyor [15.59 h]; Surveyor Helper [15.59 h]; Loader [16 h]; Water Tanker [16 h]; Dump Truck [16 h]; Plate Compactor [16 h]; Roller Compactor [16 h]; Drawpit with medium duty steel cover, size600x600x900mm, [2.43] | 14,384.57 |  | 0.0025348715507172 | Cons. | Z1 | SL | Cons |  | Cables | SUB.C | Serv. Rd | Serv.Rd | allElec |
|  | Cables | **Cables** |  | 2026-10-21 | 2026-11-30 |  |  |  |  |  |  |  |  |  |  |  |  |  |  |  |  |  |  |  |  |
|  | 4C,10+1C,10mm2 | **4C,10+1C,10mm2** |  | 2026-10-21 | 2026-11-30 |  |  |  |  |  |  |  |  |  |  |  |  |  |  |  |  |  |  |  |  |
| B2.33 71 19 242 |  | Land Adjustment | 3d | 2026-10-21 | 2026-10-24 | B2.33 71 16.25 |  |  |  | 41.32d | 0d | Labor [46.78 h]; Foreman [23.39 h]; Operator [31.18 h]; Surveyor [7.8 h]; Surveyor Helper [7.8 h]; Excavator (With Bucket) [24 h]; Water Tanker [24 h]; Dump Truck [24 h]; Roller Compactor [24 h]; SL Cable, Copper 4x10mm2/ CU/XLPE/SWA/PVC + 1x10mm2 CU/PVC [416.5] | 25,963.96 |  | 0.00496258855349975 | Cons. | Z1 | SL | Cons |  | Cables | SUB.C | Serv. Rd | Serv.Rd | allElec |
| B2.33 71 49.23.202 |  | Cable Pulling | 2d | 2026-10-25 | 2026-10-26 | B2.33 71 19 242 |  |  |  | 41.32d | 0d | Labor [62.37 h]; Foreman [31.18 h]; Surveyor [31.18 h]; Surveyor Helper [31.18 h]; Electrician [31.18 h]; SL Cable, Copper 4x10mm2/ CU/XLPE/SWA/PVC + 1x10mm2 CU/PVC [1249.49] | 77,890.96 |  | 0.0148875878281853 | Cons. | Z1 | SL | Cons |  | Cables | SUB.C | Serv. Rd | Serv.Rd | allElec |
| B2.33 71 19 252 |  | Backfilling | 3d | 2026-11-26 | 2026-11-30 | B2.33 71 00 02 023 |  |  |  | 79d | 0d | Labor [62.37 h]; Foreman [31.18 h]; Operator [62.37 h]; Surveyor [31.18 h]; Surveyor Helper [31.18 h]; Loader [32 h]; Water Tanker [32 h]; Dump Truck [32 h]; Plate Compactor [32 h]; SL Cable, Copper 4x10mm2/ CU/XLPE/SWA/PVC + 1x10mm2 CU/PVC [416.5] | 25,963.96 |  | 0.00496258855349975 | Cons. | Z1 | SL | Cons |  | Cables | SUB.C | Serv. Rd | Serv.Rd | allElec |

| ID | WBS | Activity | Duration | Start | Finish | Predecessors | Complete | Planned start | Planned finish | Total float | Free float | Resources | Cost | Actual cost | Weight % | DMM2 Weekly Progress | DMM2 Zones | Networks & Stations | DMM2 Phases | Networks Components | All Electrical Scope | Subcontractors works | Dmm2 Roads | Yellow Sheet |
| --- | --- | --- | --- | --- | --- | --- | --- | --- | --- | --- | --- | --- | --- | --- | --- | --- | --- | --- | --- | --- | --- | --- | --- | --- |
|  | SL Poles | **SL Poles** |  | 2026-10-06 | 2026-11-30 |  |  |  |  |  |  |  |  |  |  |  |  |  |  |  |  |  |  |  |
|  | Pole (10 M Sngl Arm) | **Pole (10 M Single Arm)** |  | 2026-10-06 | 2026-10-19 |  |  |  |  |  |  |  |  |  |  |  |  |  |  |  |  |  |  |  |
| B2.33 71 16.25 |  | Excavation | 2d | 2026-10-06 A | 2026-10-14 A | B2.33 71 19 013 | 100% | 2026-10-29 | 2026-10-31 |  |  | Labor [31.18 h]; Foreman [15.59 h]; Operator [31.18 h]; Surveyor [15.59 h]; Surveyor Helper [15.59 h]; Excavator (With Bucket) [16 h]; Dump Truck [16 h]; Lighting poles with 1 arm, height of ( 10) meters [6.6] | 58,898.5 | 58,898.5 | 0.0112471278804954 | Cons. | Z1 | SL | Cons | Pls&Lmn | allElec | SUB.C | Serv. Rd | Serv.Rd |
| B2.33 71 16.26 |  | PC & RC Foundation | 3d | 2026-10-07 A | 2026-10-15 A | B2.33 71 16.25 | 100% | 2026-11-01 | 2026-11-03 |  |  | Labor [62.37 h]; Foreman [31.18 h]; Laboratory Officer [31.18 h]; Carpenter [31.18 h]; Steelfixer [31.18 h]; Mason [31.18 h]; Lighting poles with 1 arm, height of ( 10) meters [6.6] | 58,898.5 | 58,898.5 | 0.0112471278804954 | Cons. | Z1 | SL | Cons | Pls&Lmn | allElec | SUB.C | Serv. Rd | Serv.Rd |
| B2.33 71 16.27 |  | Lighting Poles Installation Incl power box, Cables | 4d | 2026-10-10 A | 2026-10-17 A | B2.33 71 16.26 | 100% | 2026-11-04 | 2026-11-08 |  |  | Labor [77.96 h]; Operator [77.96 h]; Mobile Crane [40 h]; Electrician [38.98 h]; Lighting poles with 1 arm, height of ( 10) meters [13.2] | 117,797 | 117,797 | 0.0224942557609906 | Cons. | Z1 | SL | Cons | Pls&Lmn | allElec | SUB.C | Serv. Rd | Serv.Rd |
| B2.26.56.19.1 |  | Lighting Luminares Inst | 3d | 2026-10-12 A | 2026-10-17 A | B2.33 71 16.27 | 100% | 2026-11-09 | 2026-11-11 |  |  | Labor [46.78 h]; Operator [46.78 h]; Manlift [24 h]; Street Lighting( LED), Lamp Lumen: 14560, Luminare Lumen:12700 , complete with control gear and lamp, (80) WATT. [24.22] | 22,456.94 | 22,456.94 | 0.0047113256383061 | Cons. | Z1 | SL | Cons | Pls&Lmn | allElec | SUB.C | Serv. Rd | Serv.Rd |
| B2.33 71 16.28 |  | Backfilling, Grouting & Chamfering | 3d | 2026-10-17 A | 2026-10-19 A | B2.26.56.19.1, B2.1.02 41 00.18 SS, B2.33 71 00 02 013, B2.33 71 00 02 57 | 100% | 2026-12-08 | 2026-12-10 |  |  | Labor [77.96 h]; Foreman [38.98 h]; Mason [38.98 h]; Operator [77.96 h]; Surveyor [38.98 h]; Surveyor Helper [38.98 h]; Loader [40 h]; Water Tanker [40 h]; Dump Truck [40 h]; Plate Compactor [40 h]; Lighting poles with 1 arm, height of ( 10) meters [6.6] | 58,898.5 | 58,898.5 | 0.0112471278804954 | Cons. | Z1 | SL | Cons | Pls&Lmn | allElec | SUB.C | Serv. Rd | Serv.Rd |
|  | Relocate SLP | **Relocate Lighting Poles** |  | 2026-10-21 | 2026-11-30 |  |  |  |  |  |  |  |  |  |  |  |  |  |  |  |  |  |  |  |
| B2.1.02 41 00.16 |  | Excavation (Evacuation Around Poles) | 2d | 2026-10-21 | 2026-10-22 | B2.33 71 16.25 |  |  |  | 103.32d | 0d | Labor [31.18 h]; Foreman [15.59 h]; Operator [31.18 h]; Surveyor [15.59 h]; Surveyor Helper [15.59 h]; Excavator (With Bucket) [16 h]; Water Tanker [16 h]; Dump Truck [16 h]; Plate Compactor [16 h]; SL Poles Relocation [0.3] | 1,807.98 |  | 0.000908962403308057 | Cons. | Z1 | SL | Cons | Pls&Lmn | allElec | SUB.C | Serv. Rd | Serv.Rd |
| B2.1.02 41 00.17 |  | Old Poles Grubbing | 3d | 2026-10-24 | 2026-10-26 | B2.1.02 41 00.16 |  |  |  | 103.32d | 0d | Labor [46.78 h]; Operator [46.78 h]; JCB [24 h]; Manlift [24 h]; Mobile Crane [24 h]; SL Poles Relocation [0.5] | 3,013.3 |  | 0.00151493733884677 | Cons. | Z1 | SL | Cons | Pls&Lmn | allElec | SUB.C | Serv. Rd | Serv.Rd |
| B2.1.02 41 00.17a |  | Poles Transferring & Installation Incl. Foundation | 2d | 2026-10-27 | 2026-10-28 | B2.1.02 41 00.17 |  |  |  | 103.32d | 24.32d | Labor [62.37 h]; Operator [62.37 h]; Mobile Crane [32 h]; Low Bed Truck [32 h]; Electrician [31.18 h]; SL Poles Relocation [0.9] | 5,423.95 |  | 0.00272688720992418 | Cons. | Z1 | SL | Cons | Pls&Lmn | allElec | SUB.C | Serv. Rd | Serv.Rd |
| B2.1.02 41 00.18 |  | Backfilling & Warrning Tape | 3d | 2026-11-26 | 2026-11-30 | B2.1.02 41 00.17a, B2.33 71 19 252 FF, B2.33 71 19 28 |  |  |  | 79d |  | Labor [77.96 h]; Foreman [38.98 h]; Operator [155.92 h]; Surveyor [38.98 h]; Surveyor Helper [38.98 h]; Loader [40 h]; Water Tanker [40 h]; Dump Truck [40 h]; Plate Compactor [40 h]; Roller Compactor [40 h]; SL Poles Relocation [0.3] | 1,807.98 |  | 0.000908962403308057 | Cons. | Z1 | SL | Cons | Pls&Lmn | allElec | SUB.C | Serv. Rd | Serv.Rd |
|  | Earthing | **Earthing** |  | 2026-10-27 | 2026-11-03 |  |  |  |  |  |  |  |  |  |  |  |  |  |  |  |  |  |  |  |
| B2.33 71 19 13 |  | Land Adjustment | 2d | 2026-10-27 | 2026-10-28 | B2.33 71 49.23.202, B2.33 71 16.27 |  |  |  | 41.32d | 0d | Labor [31.18 h]; Foreman [15.59 h]; Operator [31.18 h]; Surveyor [7.8 h]; Surveyor Helper [7.8 h]; Excavator (With Bucket) [16 h]; Water Tanker [16 h]; Dump Truck [16 h]; Roller Compactor [16 h]; SL Earthing Including lighting poles circuits [0.45] | 904.39 |  | 0.000454679838542865 | Cons. | Z1 | SL | Cons | Cables | allElec | SUB.C | Serv. Rd | Serv.Rd |
| B2.33 71 19 14 |  | Earth Rods & Conduits | 2d | 2026-10-29 | 2026-10-31 | B2.33 71 19 13 |  |  |  | 41.32d | 0d | Labor [31.18 h]; Foreman [15.59 h]; Electrician [15.59 h]; SL Earthing Including lighting poles circuits [1.33] | 2,672.96 |  | 0.00134383152280447 | Cons. | Z1 | SL | Cons | Cables | allElec | SUB.C | Serv. Rd | Serv.Rd |
| B2.33 71 19 15 |  | Backfilling | 3d | 2026-11-01 | 2026-11-03 | B2.33 71 19 14 |  |  |  | 41.32d | 0d | Labor [77.96 h]; Foreman [38.98 h]; Operator [77.96 h]; Surveyor [38.98 h]; Surveyor Helper [38.98 h]; Loader [40 h]; Water Tanker [40 h]; Dump Truck [40 h]; Plate Compactor [40 h]; SL Earthing Including lighting poles circuits [0.45] | 904.39 |  | 0.000454679838542865 | Cons. | Z1 | SL | Cons | Cables | allElec | SUB.C | Serv. Rd | Serv.Rd |
|  | Earth & Road Works | **Earth & Road Works** |  | 2026-01-08 | 2026-11-15 |  |  |  |  |  |  |  |  |  |  |  |  |  |  |  |  |  |  |  |
|  | Earth Works | **Earth Works** |  | 2026-01-08 | 2026-11-04 |  |  |  |  |  |  |  |  |  |  |  |  |  |  |  |  |  |  |  |
| B1.2.31 23 16.01.2 |  | Roadway Excavation | 53.44d | 2026-01-08 A | 2026-03-24 A | B6.33 42 11.35.12 | 100% |  |  |  |  | Roadway Excavation for cuttings (all types of soil) [33719.2]; Labor [28.35 h]; Foreman [14.17 h]; Operator [28.35 h]; Surveyor [14.17 h]; Surveyor Helper [14.17 h]; Excavator (With Bucket) [16 h]; Water Tanker [16 h]; Dump Truck [16 h] | 503,292.93 | 503,292.93 | 6.14582534054879E-005 | Cons. | Z1 | Roads | Cons | Roads |  |  | Serv. Rd | Serv.Rd |
| B1.2.31 23 23.01.2 |  | Embankment Backfiling (12.00% Completed) | 199d | 2026-01-10 A | 2026-09-15 A | B1.2.31 23 16.01.2 | 100% |  |  |  |  | Embankment backfiling [14340.5]; Labor [28.07 h]; Foreman [14.03 h]; Operator [28.07 h]; Surveyor [14.03 h]; Surveyor Helper [14.03 h]; Loader [14.4 h]; Water Tanker [14.4 h]; Dump Truck [14.4 h]; Plate Compactor [14.4 h]; Roller Compactor [14.4 h] | 390,320.26 | 390,320.26 | 0.431689911812765 | Cons. | Z1 | Roads | Cons | Roads |  |  | Serv. Rd | Serv.Rd |
| B1.2.31 23 23.01.2_R |  | Embankment Backfiling(Rem) | 13d | 2026-10-21 | 2026-11-04 | B1.2.31 23 16.01.2, B1.2.31 23 23.01.2 |  |  |  | 34.32d | 0d | Embankment backfiling [105164]; Labor [205.82 h]; Foreman [102.91 h]; Operator [205.82 h]; Surveyor [102.91 h]; Surveyor Helper [102.91 h]; Loader [105.6 h]; Water Tanker [105.6 h]; Dump Truck [105.6 h]; Plate Compactor [105.6 h]; Roller Compactor [105.6 h] | 2,862,348.59 |  | 0.431689911812765 | Cons. | Z1 | Roads | Cons | Roads |  |  | Serv. Rd | Serv.Rd |
|  | Earth Layers | **Earth Layers** |  | 2026-08-17 | 2026-10-24 |  |  |  |  |  |  |  |  |  |  |  |  |  |  |  |  |  |  |  |
| B1.2.32 11 23.01.2 |  | Aggregate Base Course (22.00% Completed) | 26d | 2026-08-17 A | 2026-09-15 A | B1.2.32 11 13.01.2 SS | 100% |  |  |  |  | Aggregate base course [2709.46]; Labor [27.44 h]; Foreman [13.72 h]; Operator [27.44 h]; Surveyor [13.72 h]; Surveyor Helper [13.72 h]; Grader [14.08 h]; Loader [14.08 h]; Water Tanker [14.08 h]; Dump Truck [14.08 h]; Plate Compactor [14.08 h]; Roller Compactor [14.08 h] | 235,511.53 | 235,511.53 | 0.609505613540536 | Cons. | Z1 | Roads | Cons | Roads |  |  | Serv. Rd | Serv.Rd |
| B1.2.32 11 13.01.2 |  | Subgrade (50.00% Completed) | 14d | 2026-08-31 A | 2026-09-15 A | B1.2.31 23 23.01.2 SS | 100% |  |  |  |  | Subgrade [9236.79]; Labor [85.76 h]; Foreman [42.88 h]; Operator [85.76 h]; Surveyor [42.88 h]; Surveyor Helper [42.88 h]; Grader [44 h]; Loader [44 h]; Water Tanker [44 h]; Dump Truck [44 h]; Plate Compactor [44 h]; Roller Compactor [44 h] | 275,736.68 | 275,736.68 | 0.323385225034613 | Cons. | Z1 | Roads | Cons | Roads |  |  | Serv. Rd | Serv.Rd |
| B1.2.32 11 13.01.2_R |  | Subgrade(Rem) | 3d | 2026-10-21 | 2026-10-24 | B1.2.31 23 23.01.2_R SS, B1.2.32 11 13.01.2 |  |  |  | 34.32d | 0d | Subgrade [9236.79]; Labor [85.76 h]; Foreman [42.88 h]; Operator [85.76 h]; Surveyor [42.88 h]; Surveyor Helper [42.88 h]; Grader [44 h]; Loader [44 h]; Water Tanker [44 h]; Dump Truck [44 h]; Plate Compactor [44 h]; Roller Compactor [44 h] | 275,736.68 |  | 0.323385225034613 | Cons. | Z1 | Roads | Cons | Roads |  |  | Serv. Rd | Serv.Rd |
| B1.2.32 11 23.01.2_R |  | Aggregate Base Course(Rem) | 3d | 2026-10-21 | 2026-10-24 | B1.2.32 11 13.01.2_R SS, B1.2.32 11 23.01.2 |  |  |  | 34.32d | 0d | Aggregate base course [9606.26]; Labor [97.3 h]; Foreman [48.65 h]; Operator [97.3 h]; Surveyor [48.65 h]; Surveyor Helper [48.65 h]; Grader [49.92 h]; Loader [49.92 h]; Water Tanker [49.92 h]; Dump Truck [49.92 h]; Plate Compactor [49.92 h]; Roller Compactor [49.92 h] | 834,995.41 |  | 0.609505613540536 | Cons. | Z1 | Roads | Cons | Roads |  |  | Serv. Rd | Serv.Rd |

| ID | WBS | Activity | Duration | Start | Finish | Predecessors | Complete | Total float | Free float | Resources | Cost | Weight % | DMM2 Weekly Progress | DMM2 Zones | Networks & Stations | DMM2 Phases | Networks Components | Dmm2 Roads | Yellow Sheet |
| --- | --- | --- | --- | --- | --- | --- | --- | --- | --- | --- | --- | --- | --- | --- | --- | --- | --- | --- | --- |
|  | Interlock | **Interlock** |  | 2026-11-01 | 2026-11-03 |  |  |  |  |  |  |  |  |  |  |  |  |  |  |
| B1.2.32 14 13.13.2 |  | 60mm thick - Interlocking Block Pavers | 3d | 2026-11-01 | 2026-11-03 | B1.2.32 11 23.01.2_R SS, B2.33 71 19 15 SS |  | 41.32d | 1d | 60mm thick - Interlocking block pavers for sidewalks and medians [4396.67]; Labor [202.7 h]; Foreman [101.35 h]; Mason [101.35 h]; Operator [202.7 h]; JCB [104 h] | 293,381.12 | 0.162879650555733 | Cons. | Z1 | Roads | Cons | Roads | Serv. Rd | Serv.Rd |
|  | Curbstone | **Curbstone** |  | 2026-10-25 | 2026-11-12 |  |  |  |  |  |  |  |  |  |  |  |  |  |  |
|  | Pre Install | **Pre-Installation** |  | 2026-10-25 | 2026-11-02 |  |  |  |  |  |  |  |  |  |  |  |  |  |  |
| 32 16 13.0021 |  | Excavation | 2d | 2026-10-25 | 2026-10-26 | B1.2.32 11 23.01.2_R |  | 34.32d | 0d | Curb Stone, Type K1 [710.12]; Edge Curb, Type K4 [521.09]; Heel Curb, Type K5 [340.88]; Labor [77.96 h]; Foreman [38.98 h]; Operator [77.96 h]; Surveyor [38.98 h]; Surveyor Helper [38.98 h]; JCB [40 h]; Water Tanker [40 h]; Dump Truck [40 h]; Plate Compactor [40 h] | 114,814.76 | 0.064793287314269 | Cons. | Z1 | Roads | Cons | Roads | Serv. Rd | Serv.Rd |
| 32 16 13.0023 |  | Haunching | 3d | 2026-10-27 | 2026-10-29 | 32 16 13.0021 |  | 40.32d | 0d | Curb Stone, Type K1 [710.12]; Edge Curb, Type K4 [521.09]; Heel Curb, Type K5 [340.88]; Labor [109.15 h]; Carpenter [54.57 h]; Mason [54.57 h]; Surveyor [54.57 h]; Surveyor Helper [54.57 h] | 114,814.76 | 0.064793287314269 | Cons. | Z1 | Roads | Cons | Roads | Serv. Rd | Serv.Rd |
| 32 16 13.0024 |  | PCC | 3d | 2026-10-31 | 2026-11-02 | 32 16 13.0023 |  | 40.32d | 0d | Curb Stone, Type K1 [710.12]; Edge Curb, Type K4 [521.09]; Heel Curb, Type K5 [340.88]; Labor [93.55 h]; Mason [46.78 h]; Surveyor [46.78 h]; Surveyor Helper [46.78 h] | 114,814.76 | 0.064793287314269 | Cons. | Z1 | Roads | Cons | Roads | Serv. Rd | Serv.Rd |
|  | Installation | **Installation** |  | 2026-11-03 | 2026-11-07 |  |  |  |  |  |  |  |  |  |  |  |  |  |  |
| B1.2.32 16.13.01.2 |  | Curb Stone, Type K1 | 2d | 2026-11-03 | 2026-11-04 | B1.2.32 14 13.13.2 SS, 32 16 13.0024, DMM2-Proc-Delv-7267 |  | 40.32d | 0d | Curb Stone, Type K1 [2130.34]; Labor [93.55 h]; Foreman [46.78 h]; Mason [46.78 h]; Operator [93.55 h]; Surveyor [46.78 h]; Surveyor Helper [46.78 h]; JCB [48 h] | 160,857.65 | 0.0948760520288344 | Cons. | Z1 | Roads | Cons | Roads | Serv. Rd | Serv.Rd |
| B1.2.32 16.13.03.2 |  | Edge Curb, Type K4 | 2d | 2026-11-03 | 2026-11-04 | B1.2.32 14 13.13.2 SS, B1.2.32 16.13.01.2 SS |  | 40.32d | 0d | Edge Curb, Type K4 [1380.51]; Labor [46.78 h]; Foreman [23.39 h]; Mason [23.39 h]; Operator [46.78 h]; Surveyor [23.39 h]; Surveyor Helper [23.39 h]; JCB [24 h] | 104,239.87 | 0.0574058975495946 | Cons. | Z1 | Roads | Cons | Roads | Serv. Rd | Serv.Rd |
| B1.2.32 16.13.042 |  | Heel Curb, Type K5 | 2d | 2026-11-05 | 2026-11-07 | B1.2.32 14 13.13.2, B1.2.32 16.13.03.2 |  | 40.32d | 0d | Heel Curb, Type K5 [1022.66]; Labor [31.18 h]; Foreman [15.59 h]; Mason [15.59 h]; Operator [31.18 h]; Surveyor [15.59 h]; Surveyor Helper [15.59 h]; JCB [16 h] | 65,546.36 | 0.0344978473152727 | Cons. | Z1 | Roads | Cons | Roads | Serv. Rd | Serv.Rd |
|  | Finishing | **Finishing** |  | 2026-11-11 | 2026-11-12 |  |  |  |  |  |  |  |  |  |  |  |  |  |  |
| 32 16 13.0022 |  | Finishing, Fareface | 2d | 2026-11-11 | 2026-11-12 | B1.2.32 16.13.01.2, B1.2.32 16.13.03.2, B1.2.32 16.13.042, B1.2.32 12 16.01.2 |  | 52.32d | 0d | Curb Stone, Type K1 [473.41]; Edge Curb, Type K4 [347.39]; Heel Curb, Type K5 [227.26]; Labor [93.55 h]; Mason [46.78 h] | 76,542.89 | 0.0431953566528051 | Cons. | Z1 | Roads | Cons | Roads | Serv. Rd | Serv.Rd |
|  | Asphalt Layers | **Asphalt Layers** |  | 2026-08-26 | 2026-11-10 |  |  |  |  |  |  |  |  |  |  |  |  |  |  |
| B1.2.32 11 26.01.2 |  | Bituminous Base Course including Prime Coat (MC1) and tack coat (RC2) (0.00% Completed) | 18d | 2026-08-26 A | 2026-09-15 A | B1.2.32 11 23.01.2 FF | 100% |  |  | Bituminous base course(Grading I - Class A); Labor; Foreman; Operator; Surveyor; Surveyor Helper; Dump Truck; Roller Compactor; MC1/RC2 Sprayer |  | 2.55847268084388 | Cons. | Z1 | Roads | Cons | Roads | Serv. Rd | Serv.Rd |
| B1.2.32 11 26.01.2_R |  | Bituminous Base Course including Prime Coat (MC1) and tack coat (RC2)(Rem) | 4d | 2026-10-21 | 2026-10-25 | B1.2.32 11 23.01.2_R FF, B1.2.32 11 26.01.2 |  | 53.32d | 13d | Bituminous base course(Grading I - Class A) [8438.37]; Labor [77.96 h]; Foreman [38.98 h]; Operator [77.96 h]; Surveyor [38.98 h]; Surveyor Helper [38.98 h]; Dump Truck [40 h]; Roller Compactor [40 h]; MC1/RC2 Sprayer [40 h] | 4,637,964.74 | 2.55847268084388 | Cons. | Z1 | Roads | Cons | Roads | Serv. Rd | Serv.Rd |
| B1.2.32 12 16.01.2 |  | Bituminous concrete Wearing Course, including tack coat (RC2) | 5d | 2026-11-05 | 2026-11-10 | B1.2.32 11 26.01.2_R SS, B1.2.32 16.13.042 SS |  | 40.32d | 0d | Bituminous concrete wearing course, after compaction(Grading I - Class A), including tack coat (RC2) [3087.62]; Labor [46.78 h]; Foreman [23.39 h]; Operator [46.78 h]; Surveyor [23.39 h]; Surveyor Helper [23.39 h]; Dump Truck [24 h]; Roller Compactor [24 h]; MC1/RC2 Sprayer [24 h] | 1,821,744.83 | 1.00441923960744 | Cons. | Z1 | Roads | Cons | Roads | Serv. Rd | Serv.Rd |
|  | Pavement Marking | **Pavement Marking** |  | 2026-11-14 | 2026-11-15 |  |  |  |  |  |  |  |  |  |  |  |  |  |  |
| B1.2.32 17 23.01.2 |  | Retroreflective Thermoplastic White Traffic lines | 2d | 2026-11-14 | 2026-11-15 | B1.2.32 12 16.01.2, B1.2.32 12 19.13.02, 32 16 13.0022, B1.1.02 41 00.01 |  | 52.32d | 26.32d | Retroreflective Thermoplastic White Traffic lines [1046.64]; Labor [46.78 h]; Mason [23.39 h]; Road Marking Machine [24 h] | 31,244.43 | 0.0157081274146324 | Cons. | Z1 | Roads | Cons | Roads | Serv. Rd | Serv.Rd |
| B1.2.32 17 23.02.2 |  | Retroreflective Thermoplastic Yellow, Traffic lines | 2d | 2026-11-14 | 2026-11-15 | B1.2.32 12 16.01.2, B1.2.32 12 19.13.02, 32 16 13.0022 |  | 52.32d | 26.32d | Retroreflective Thermoplastic Yellow, Traffic lines [501.64]; Labor [31.18 h]; Mason [15.59 h]; Road Marking Machine [16 h] | 14,975.08 | 0.00752871564074094 | Cons. | Z1 | Roads | Cons | Roads | Serv. Rd | Serv.Rd |
|  | Traffic Signs | **Traffic Signs** |  | 2026-10-27 | 2026-11-04 |  |  |  |  |  |  |  |  |  |  |  |  |  |  |
|  | Pre Install | **Pre-Installation** |  | 2026-10-27 | 2026-10-31 |  |  |  |  |  |  |  |  |  |  |  |  |  |  |
| B2.31 23 00.41 |  | Excavation | 2d | 2026-10-27 | 2026-10-28 | 32 16 13.0021 |  | 34.32d | 0d | Traffic signs, ground mounted, 1 Sheet Alumenium, (breakaway) Single post [7.9]; Traffic signs, ground mounted, 2 Sheets Alumenium, (breakaway) Single post [0.52]; Ground mounted, 1 Sheet Alumenium powder coated UV printed, Single post [0.4]; Labor [31.18 h]; Foreman [15.59 h]; Operator [31.18 h]; Surveyor [15.59 h]; Surveyor Helper [15.59 h]; JCB [16 h]; Water Tanker [16 h]; Dump Truck [16 h]; Plate Compactor [16 h] | 10,061.75 | 0.00505854038310486 | Cons. | Z1 | Roads | Cons | Roads | Serv. Rd | Serv.Rd |
| 10 14 53.02 |  | Foundation | 2d | 2026-10-29 | 2026-10-31 | B2.31 23 00.41 |  | 34.32d | 0d | Traffic signs, ground mounted, 1 Sheet Alumenium, (breakaway) Single post [7.9]; Traffic signs, ground mounted, 2 Sheets Alumenium, (breakaway) Single post [0.52]; Ground mounted, 1 Sheet Alumenium powder coated UV printed, Single post [0.39]; Labor [62.37 h]; Carpenter [31.18 h]; Steelfixer [31.18 h]; Mason [31.18 h]; Surveyor [31.18 h]; Surveyor Helper [31.18 h] | 10,050.59 | 0.00505292998447853 | Cons. | Z1 | Roads | Cons | Roads | Serv. Rd | Serv.Rd |

| ID | WBS | Activity | Duration | Start | Finish | Predecessors | Complete | Planned start | Planned finish | Total float | Free float | Resources | Cost | Actual cost | Weight % | DMM2 Weekly Progress | DMM2 Zones | Networks & Stations | DMM2 Phases | Networks Components | Dmm2 Roads | Yellow Sheet |
| --- | --- | --- | --- | --- | --- | --- | --- | --- | --- | --- | --- | --- | --- | --- | --- | --- | --- | --- | --- | --- | --- | --- |
|  | Installation | **Installation** |  | 2026-11-01 | 2026-11-04 |  |  |  |  |  |  |  |  |  |  |  |  |  |  |  |  |  |
| B1.2.10 14 53.317 |  | 1 Sheet Alumenium, Single post | 2d | 2026-11-01 | 2026-11-02 | 10 14 53.02 |  |  |  | 34.32d | 0d | Traffic signs, ground mounted, 1 Sheet Alumenium, (breakaway) Single post [1.12]; Labor [31.18 h]; Foreman [15.59 h]; Operator [31.18 h]; JCB [16 h] | 1,249.85 |  | 0.00062836351998693 | Cons. | Z1 | Roads | Cons | Roads | Serv. Rd | Serv.Rd |
| B1.2.10 14 14.01.18 |  | Ground mounted, 1 Sheet Alumenium, Single post | 2d | 2026-11-03 | 2026-11-04 | 10 14 53.02, B1.2.10 14 53.318 SS |  |  |  | 34.32d | 6.32d | Ground mounted, 1 Sheet Alumenium powder coated UV printed, Single post [0.79]; Labor [31.18 h]; Foreman [15.59 h]; Operator [31.18 h]; JCB [16 h] | 881.59 |  | 0.000443221491480094 | Cons. | Z1 | Roads | Cons | Roads | Serv. Rd | Serv.Rd |
| B1.2.10 14 53.318 |  | 2 Sheet Alumenium, Single post | 2d | 2026-11-03 | 2026-11-04 | 10 14 53.02, B1.2.10 14 53.317 |  |  |  | 34.32d | 0d | Traffic signs, ground mounted, 2 Sheets Alumenium, (breakaway) Single post [0.14]; Labor [31.18 h]; Foreman [15.59 h]; Operator [31.18 h]; JCB [16 h] | 212.06 |  | 0.000106613719303593 | Cons. | Z1 | Roads | Cons | Roads | Serv. Rd | Serv.Rd |
|  | Road Misc. | **Miscellaneous** |  | 2026-11-11 | 2026-11-12 |  |  |  |  |  |  |  |  |  |  |  |  |  |  |  |  |  |
| B1.2.32 12 19.13.02 |  | Speed Tables | 2d | 2026-11-11 | 2026-11-12 | B1.2.32 12 16.01.2 |  |  |  | 52.32d | 0d | Asphalt speed table [1]; Labor [93.55 h]; Foreman [46.78 h]; Operator [93.55 h]; JCB [48 h]; Roller Compactor [48 h] | 12,204.23 |  | 0.00613567278845278 | Cons. | Z1 | Roads | Cons | Roads | Serv. Rd | Serv.Rd |
|  | Demolishion | **Demolishing and Site Clearing** |  | 2026-01-17 | 2026-06-15 |  |  |  |  |  |  |  |  |  |  |  |  |  |  |  |  |  |
| B1.1.02 41 00.03 |  | Removal of concrete protection | 4d | 2026-01-17 A | 2026-01-20 A | B1.1.02 41 00.02 | 100% |  |  |  |  | Removal of concrete protection [1780]; Labor [85.05 h]; Foreman [42.52 h]; Operator [85.05 h]; JCB [48 h] | 51,573.72 | 51,573.72 | 0.00633651675383021 | Demolish | Z1 |  | Cons |  |  |  |
| B1.1.02 41 00.09 |  | Dismantling and relocation of existing inlets | 24.25d | 2026-03-06 A | 2026-04-11 A | B1.1.02 41 00.05 | 100% | 2026-03-07 | 2026-04-11 |  |  | Dismantling and relocation of existing inlets [10]; Labor [70.87 h]; Foreman [35.44 h]; Operator [70.87 h]; JCB [40 h] | 92,716.8 | 92,716.8 | 0.0652588392118608 | Demolish | Z1 |  | Cons |  |  |  |
| B1.1.02 41 00.02 |  | Removal of bituminous concrete wearing course | 5d | 2026-04-06 A | 2026-04-10 A | B1.1.02 41 00.01 | 100% | 2026-04-06 | 2026-04-11 |  |  | Removal of bituminous concrete wearing course only [2500]; Labor [56.7 h]; Foreman [28.35 h]; Operator [56.7 h]; JCB [32 h] | 28,535 | 28,535 | 0.00401687930754824 | Demolish | Z1 |  | Cons |  |  |  |
| B1.1.02 41 00.08 |  | Selective Tree Removal | 4d | 2026-04-06 A | 2026-04-09 A | B1.1.02 41 00.06 | 100% |  |  |  |  | Selective Tree Removal [3]; Labor [42.52 h]; Foreman [21.26 h]; Operator [42.52 h]; JCB [24 h] | 4,867.63 | 4,867.63 | 0.00163147098029652 | Demolish | Z1 |  | Cons |  |  |  |
| B1.1.02 41 00.04 |  | Removal of riprap | 6d | 2026-04-15 A | 2026-04-21 A | B1.1.02 41 00.03 | 100% |  |  |  |  | Removal of riprap [470]; Labor [85.05 h]; Foreman [42.52 h]; Operator [85.05 h]; JCB [48 h] | 18,982.36 | 18,982.36 | 0.009543398970241 | Demolish | Z1 |  | Cons |  |  |  |
| B1.1.02 41 00.01 |  | Removal of curbstone | 4d | 2026-05-09 A | 2026-05-12 A | B2.31 23 00.02 | 100% |  |  |  |  | Removal of curbstone [2131]; Labor [56.7 h]; Foreman [28.35 h]; Operator [56.7 h]; JCB [32 h] | 16,839.16 | 16,839.16 | 0.00403232884334652 | Demolish | Z1 |  | Cons |  |  |  |
| B1.1.02 41 00.10 |  | Dismantling and level adjustment for storm manholes | 2d | 2026-05-31 A | 2026-06-01 A | B1.1.02 41 00.09, B1.1.02 41 00.100 | 100% |  |  |  |  | Dismantling and level adjustment for storm manholes [9]; Labor [56.7 h]; Foreman [28.35 h]; Operator [56.7 h]; JCB [32 h] | 5,942.32 | 5,942.32 | 0.00298749880807544 | Demolish | Z1 |  | Cons |  |  |  |
| B1.1.02 41 00.05 |  | Removal of traffic signs | 7d | 2026-06-08 A | 2026-06-15 A | B1.1.02 41 00.08 | 100% |  |  |  |  | Removal of traffic signs [2]; Labor [42.52 h]; Foreman [21.26 h]; Operator [42.52 h]; JCB [24 h] | 93.07 | 93.07 | 4.67900227033094E-005 | Demolish | Z1 |  | Cons |  |  |  |
| B1.1.02 41 00.06 |  | Removal of culvert's wing walls | 7d | 2026-06-08 A | 2026-06-15 A | B1.1.02 41 00.04 | 100% |  |  |  |  | Removal of culvert's wing walls [2]; Labor [85.05 h]; Foreman [42.52 h]; Operator [85.05 h]; JCB [48 h] | 3,476.89 | 3,476.89 | 0.00174800462174628 | Demolish | Z1 |  | Cons |  |  |  |
| B1.1.02 41 00.101 |  | Removal of existing building | 7d | 2026-06-08 A | 2026-06-15 A | B1.1.02 41 00.10 | 100% |  |  |  |  | Removal of existing building (approximate area 4 sq.m) [1]; Labor [170.1 h]; Foreman [85.05 h]; Operator [170.1 h]; JCB [96 h] | 3,940.47 | 3,940.47 | 0.00198106989364207 | Demolish | Z1 |  | Cons |  |  |  |
|  | Zone 02 | **Zone 02** |  | 2025-09-18 | 2027-01-23 |  |  |  |  |  |  |  |  |  |  |  |  |  |  |  |  |  |
|  | Dewatering | **Earthworks & Site Grading** |  | 2025-09-18 | 2026-10-28 |  |  |  |  |  |  |  |  |  |  |  |  |  |  |  |  |  |
| B1.1.31 23 19.02 |  | Dewatering | 18.49d | 2025-09-18 A | 2025-10-12 A | B1.1.31 23 19.01 | 100% |  |  |  |  | Surface Dewatering [0.21]; Labor [240.97 h]; Foreman [120.49 h]; Surveyor [120.49 h]; Surveyor Helper [120.49 h]; Dewatering pump [136 h] | 608,454 | 608,454 | 0.305900024865046 | Earth | Z2 |  | Cons |  | Z2 |  |
| B1.1.31 23 16.02 |  | Excavation (all types of soil) (95.00% Completed) | 274d | 2025-10-14 A | 2026-09-15 A | B1.1.31 23 19.02, B1.1.31 23 16.01 FF | 100% |  |  |  |  | Excavation (all types of soil) [79414.7]; Labor [207.38 h]; Foreman [103.69 h]; Operator [207.38 h]; Surveyor [103.69 h]; Surveyor Helper [103.69 h]; Excavator (With Bucket) [106.4 h]; Water Tanker [106.4 h]; Dump Truck [106.4 h]; Plate Compactor [106.4 h] | 1,185,343.15 | 1,185,343.15 | 0.618660990797966 | Earth | Z2 |  | Cons |  | Z2 |  |
| B1.1.31 23 23.52 |  | Engineering Backfiling - Entrance Road 01 | 82.14d | 2025-10-28 A | 2026-02-01 A | B1.1.31 23 23.92, B1.1.31 23 23.92 FF | 100% |  |  |  |  | Fill [19976.1]; Labor [184.27 h]; Foreman [92.14 h]; Operator [184.27 h]; Surveyor [92.14 h]; Surveyor Helper [92.14 h]; Loader [104 h]; Water Tanker [104 h]; Dump Truck [104 h]; Plate Compactor [104 h]; Roller Compactor [104 h] | 561,247.77 | 561,247.77 | 0.555435808998572 | Earth | Z2 |  | Cons |  | Ent Rd 01 |  |
| B1.1.31 23 23.72 |  | Engineering Backfiling - Management Road 01 | 82.14d | 2025-11-09 A | 2026-02-12 A | B1.1.31 23 23.62 | 100% |  |  |  |  | Fill [18685]; Labor [184.27 h]; Foreman [92.14 h]; Operator [184.27 h]; Surveyor [92.14 h]; Surveyor Helper [92.14 h]; Loader [104 h]; Water Tanker [104 h]; Dump Truck [104 h]; Plate Compactor [104 h]; Roller Compactor [104 h] | 524,975.25 | 524,975.25 | 0.519592252436027 | Earth | Z2 |  | Cons |  | Mngmnt Rd |  |
| B1.1.31 23 23.62 |  | Engineering Backfiling - Entrance Road 02 | 99.14d | 2025-11-12 A | 2026-03-15 A | B1.1.31 23 23.52, B1.1.31 23 23.52 FF | 100% |  |  |  |  | Fill [17184.1]; Labor [184.27 h]; Foreman [92.14 h]; Operator [184.27 h]; Surveyor [92.14 h]; Surveyor Helper [92.14 h]; Loader [104 h]; Water Tanker [104 h]; Dump Truck [104 h]; Plate Compactor [104 h]; Roller Compactor [104 h] | 482,804.11 | 482,804.11 | 0.477804464333612 | Earth | Z2 |  | Cons |  | Ent Rd 02 |  |
| B1.1.31 23 23.42 |  | Engineering Backfiling - Commercial Road 01 | 89.64d | 2025-11-15 A | 2026-03-03 A | B1.1.31 23 23.01 | 100% |  |  |  |  | Fill [19976.3]; Labor [184.27 h]; Foreman [92.14 h]; Operator [184.27 h]; Surveyor [92.14 h]; Surveyor Helper [92.14 h]; Loader [104 h]; Water Tanker [104 h]; Dump Truck [104 h]; Plate Compactor [104 h]; Roller Compactor [104 h] | 561,254.12 | 561,254.12 | 0.555442090316227 | Earth | Z2 |  | Cons |  | Commrce |  |
| B1.1.31 23 23.82 |  | Engineering Backfiling - Parking Roads | 75.1d | 2025-12-01 A | 2026-03-03 A | B1.1.31 23 23.42 | 100% |  |  |  |  | Fill [23114.5]; Labor [226.8 h]; Foreman [113.4 h]; Operator [226.8 h]; Surveyor [113.4 h]; Surveyor Helper [113.4 h]; Loader [128 h]; Water Tanker [128 h]; Dump Truck [128 h]; Plate Compactor [128 h]; Roller Compactor [128 h] | 649,425.23 | 649,425.23 | 0.642700151082904 | Earth | Z2 |  | Cons |  | Prkng |  |
| B1.1.31 23 23.102 |  | Engineering Backfiling - Pump Station | 25.81d | 2026-01-26 A | 2026-03-01 A | B1.1.31 23 23.02 | 100% |  |  |  |  | Fill [8248.22]; Labor [99.22 h]; Foreman [49.61 h]; Operator [99.22 h]; Surveyor [49.61 h]; Surveyor Helper [49.61 h]; Loader [56 h]; Water Tanker [56 h]; Dump Truck [56 h]; Plate Compactor [56 h]; Roller Compactor [56 h] | 231,742.05 | 231,742.05 | 0.229342262372837 | Earth | Z2 |  | Cons |  |  |  |
| B1.1.31 23 23.02 |  | Engineering Backfiling - Arterial Roads | 27.67d | 2026-02-02 A | 2026-03-12 A | B1.1.31 23 23.32 | 100% |  |  |  |  | Fill [26931.9]; Labor [269.32 h]; Foreman [134.66 h]; Operator [269.32 h]; Surveyor [134.66 h]; Surveyor Helper [134.66 h]; Loader [152 h]; Water Tanker [152 h]; Dump Truck [152 h]; Plate Compactor [152 h]; Roller Compactor [152 h] | 756,677.79 | 756,677.79 | 0.748842058895688 | Earth | Z2 |  | Cons |  | Art |  |
| B1.1.31 23 23.112 |  | Engineering Backfiling - Guard Rooms | 30.01d | 2026-02-04 A | 2026-03-19 A | B1.1.31 23 23.102, B1.1.31 23 23.82 | 100% | 2026-02-04 | 2026-03-24 |  |  | Fill [10267.9]; Labor [113.4 h]; Foreman [56.7 h]; Operator [113.4 h]; Surveyor [56.7 h]; Surveyor Helper [56.7 h]; Loader [64 h]; Water Tanker [64 h]; Dump Truck [64 h]; Plate Compactor [64 h]; Roller Compactor [64 h] | 288,485.66 | 288,485.66 | 0.285498262079859 | Earth | Z2 |  | Cons |  |  |  |
| B1.1.31 23 23.92 |  | Engineering Backfiling - Service Road | 24.51d | 2026-02-18 A | 2026-04-01 A | B1.1.31 23 23.112 SS+2d, B1.1.31 23 23.112 FF+2d | 100% |  |  |  |  | Fill [22047.1]; Labor [198.45 h]; Foreman [99.22 h]; Operator [198.45 h]; Surveyor [99.22 h]; Surveyor Helper [99.22 h]; Loader [112 h]; Water Tanker [112 h]; Dump Truck [112 h]; Plate Compactor [112 h]; Roller Compactor [112 h] | 619,436.01 | 619,436.01 | 0.613021477540154 | Earth | Z2 |  | Cons |  | Serv. Rd |  |
| B1.1.31 23 16.02_R |  | Excavation (all types of soil)(Rem) | 6.22d | 2026-10-21 | 2026-10-28 | B1.1.31 23 19.02, B1.1.31 23 16.01_R FF, B1.1.31 23 16.02 |  |  |  | 74.1d | 0d | Excavation (all types of soil) [4179.72]; Labor [10.91 h]; Foreman [5.46 h]; Operator [10.91 h]; Surveyor [5.46 h]; Surveyor Helper [5.46 h]; Excavator (With Bucket) [5.6 h]; Water Tanker [5.6 h]; Dump Truck [5.6 h]; Plate Compactor [5.6 h] | 62,386.48 |  | 0.618660990797966 | Earth | Z2 |  | Cons |  | Z2 |  |

| ID | WBS | Activity | Duration | Start | Finish | Predecessors | Complete | Total float | Free float | Resources | Cost | Actual cost | Weight % | DMM2 Weekly Progress | DMM2 Zones | Networks & Stations | DMM2 Phases | UNASCO | Networks Components | Subcontractors works | Dmm2 Roads | Yellow Sheet |
| --- | --- | --- | --- | --- | --- | --- | --- | --- | --- | --- | --- | --- | --- | --- | --- | --- | --- | --- | --- | --- | --- | --- |
|  | Service Road | **Service Road** |  | 2026-02-13 | 2026-12-16 |  |  |  |  |  |  |  |  |  |  |  |  |  |  |  |  |  |
|  | Wet Networks | **Wet Networks** |  | 2026-08-09 | 2026-10-28 |  |  |  |  |  |  |  |  |  |  |  |  |  |  |  |  |  |
|  | Stormwater Network | **Stormwater Network** |  | 2026-08-09 | 2026-10-28 |  |  |  |  |  |  |  |  |  |  |  |  |  |  |  |  |  |
|  | GRP | **GRP** |  | 2026-08-11 | 2026-10-28 |  |  |  |  |  |  |  |  |  |  |  |  |  |  |  |  |  |
|  | ?40011 | **?1500** |  | 2026-08-11 | 2026-10-28 |  |  |  |  |  |  |  |  |  |  |  |  |  |  |  |  |  |
|  | 3 | **Depth From 2.5m to 3.5m** |  | 2026-08-13 | 2026-10-28 |  |  |  |  |  |  |  |  |  |  |  |  |  |  |  |  |  |
| B6.33 42 11.31-1 1 |  | Excavation | 2d | 2026-08-13 A | 2026-08-16 A | B1.1.31 23 19.02, B1.1.31 23 23.92 | 100% |  |  | Labor [42.52 h]; Foreman [21.26 h]; Operator [42.52 h]; Surveyor [21.26 h]; Surveyor Helper [21.26 h]; Excavator (With Bucket) [24 h]; Water Tanker [24 h]; Dump Truck [24 h]; Plate Compactor [24 h]; 2.51m - 3.5m [30.32] | 58,672.54 | 58,672.54 | 0.0124664505738366 | Cons. | Z2 | Storm | Cons | CS.UNSC | GRPs | SUB.C | Serv. Rd | Serv.Rd |
| B6.33 42 11.31-1 3 |  | Sand Bedding (67.47% Completed) | 26.1d | 2026-08-16 A | 2026-09-15 A | B6.33 42 11.31-1 1 | 100% |  |  | Labor [21.04 h]; Foreman [10.52 h]; Operator [42.08 h]; Surveyor [10.52 h]; Surveyor Helper [10.52 h]; Loader [10.8 h]; Water Tanker [10.8 h]; Dump Truck [10.8 h]; Plate Compactor [10.8 h]; 2.51m - 3.5m [4.95] | 9,576.25 | 9,576.25 | 0.00311796124261252 | Cons. | Z2 | Storm | Cons | CS.UNSC | GRPs | SUB.C | Serv. Rd | Serv.Rd |
| B6.33 42 11.31-1 5 |  | Pipe Laying (39.69% Completed) | 25.1d | 2026-08-17 A | 2026-09-15 A | B6.33 42 11.31-1 3 FF | 100% |  |  | Labor [12.38 h]; Foreman [6.19 h]; Plumber Helper [6.19 h]; Plumber [6.19 h]; Operator [6.19 h]; Surveyor [6.19 h]; Surveyor Helper [6.19 h]; Mobile Crane [6.35 h]; 2.51m - 3.5m |  |  |  | Cons. | Z2 | Storm | Cons | CS.UNSC | GRPs |  | Serv. Rd | Serv.Rd |
| B6.33 42 11.31-1 7 |  | Embedment & Test (67.47% Completed) | 23d | 2026-08-20 A | 2026-09-15 A | B6.33 42 11.31-1 5 FF | 100% |  |  | Labor [42.08 h]; Foreman [21.04 h]; Plumber Helper [21.04 h]; Plumber [21.04 h]; Operator [42.08 h]; Surveyor [21.04 h]; Surveyor Helper [21.04 h]; Loader [21.59 h]; Water Tanker [21.59 h]; Dump Truck [21.59 h]; Plate Compactor [21.59 h]; Roller Compactor [21.59 h]; 2.51m - 3.5m [20.46] | 39,588.12 | 39,588.12 | 0.0124718449704501 | Cons. | Z2 | Storm | Cons | CS.UNSC | GRPs | SUB.C | Serv. Rd | Serv.Rd |
| B6.33 42 11.31-1 9 |  | Backfilling & Warrning Tape (67.47% Completed) | 21d | 2026-08-23 A | 2026-09-15 A | B6.33 42 11.31-1 7 FF | 100% |  |  | Labor [52.6 h]; Foreman [26.3 h]; Operator [105.21 h]; Surveyor [26.3 h]; Surveyor Helper [26.3 h]; Loader [26.99 h]; Water Tanker [26.99 h]; Dump Truck [26.99 h]; Plate Compactor [26.99 h]; Roller Compactor [26.99 h]; 2.51m - 3.5m [9.9] | 19,152.5 | 19,152.5 | 0.00623592248522508 | Cons. | Z2 | Storm | Cons | CS.UNSC | GRPs | SUB.C | Serv. Rd | Serv.Rd |
| B6.33 42 11.31-1 3_R |  | Sand Bedding(Rem) | 2.28d | 2026-10-21 | 2026-10-24 | B6.33 42 11.31-1 1, B6.33 42 11.31-1 3 |  | 111.04d | 0d | Labor [10.14 h]; Foreman [5.07 h]; Operator [20.29 h]; Surveyor [5.07 h]; Surveyor Helper [5.07 h]; Loader [5.2 h]; Water Tanker [5.2 h]; Dump Truck [5.2 h]; Plate Compactor [5.2 h]; 2.51m - 3.5m [2.39] | 4,616.46 |  | 0.00311796124261252 | Cons. | Z2 | Storm | Cons | CS.UNSC | GRPs | SUB.C | Serv. Rd | Serv.Rd |
| B6.33 42 11.31-1 5_R |  | Pipe Laying(Rem) | 2.28d | 2026-10-21 | 2026-10-24 | B6.33 42 11.31-1 3_R FF, B6.33 42 11.31-1 5 |  | 111.04d | 0.56d | Labor [18.81 h]; Foreman [9.4 h]; Plumber Helper [9.4 h]; Plumber [9.4 h]; Operator [9.4 h]; Surveyor [9.4 h]; Surveyor Helper [9.4 h]; Mobile Crane [9.65 h]; 2.51m - 3.5m |  |  |  | Cons. | Z2 | Storm | Cons | CS.UNSC | GRPs |  | Serv. Rd | Serv.Rd |
| B6.33 42 11.31-1 7_R |  | Embedment & Test(Rem) | 2.84d | 2026-10-21 | 2026-10-24 | B6.33 42 11.31-1 5_R FF, B6.33 42 11.31-1 7 |  | 110.48d | 3.4d | Labor [20.29 h]; Foreman [10.14 h]; Plumber Helper [10.14 h]; Plumber [10.14 h]; Operator [20.29 h]; Surveyor [10.14 h]; Surveyor Helper [10.14 h]; Loader [10.41 h]; Water Tanker [10.41 h]; Dump Truck [10.41 h]; Plate Compactor [10.41 h]; Roller Compactor [10.41 h]; 2.51m - 3.5m [9.86] | 19,084.42 |  | 0.0124718449704501 | Cons. | Z2 | Storm | Cons | CS.UNSC | GRPs | SUB.C | Serv. Rd | Serv.Rd |
| B6.33 42 11.31-1 9_R |  | Backfilling & Warrning Tape(Rem) | 3.12d | 2026-10-25 | 2026-10-28 | B6.33 42 11.31-1 7_R FF, B6.33 42 11.31-1 9, B6.33 42 11.01-1029_R |  | 107.08d |  | Labor [25.36 h]; Foreman [12.68 h]; Operator [50.72 h]; Surveyor [12.68 h]; Surveyor Helper [12.68 h]; Loader [13.01 h]; Water Tanker [13.01 h]; Dump Truck [13.01 h]; Plate Compactor [13.01 h]; Roller Compactor [13.01 h]; 2.51m - 3.5m [4.77] | 9,232.93 |  | 0.00623592248522508 | Cons. | Z2 | Storm | Cons | CS.UNSC | GRPs | SUB.C | Serv. Rd | Serv.Rd |
|  | 1 | **Depth From 3.5m to 4.5m** |  | 2026-08-11 | 2026-10-28 |  |  |  |  |  |  |  |  |  |  |  |  |  |  |  |  |  |
| B6.33 42 11.31-1 2 |  | Excavation | 5d | 2026-08-11 A | 2026-08-17 A | B6.33 42 11.31-1 1 | 100% |  |  | Labor [28.35 h]; Foreman [14.17 h]; Operator [28.35 h]; Surveyor [14.17 h]; Surveyor Helper [14.17 h]; Excavator (With Bucket) [16 h]; Water Tanker [16 h]; Dump Truck [16 h]; Plate Compactor [16 h]; 3.51m - 4.5m [20.78] | 42,507.09 | 42,507.09 | 0.00530704797155289 | Cons. | Z2 | Storm | Cons | CS.UNSC | GRPs | SUB.C | Serv. Rd | Serv.Rd |
| B6.33 42 11.31-1 4 |  | Sand Bedding (67.47% Completed) | 27.1d | 2026-08-15 A | 2026-09-15 A | B6.33 42 11.31-1 2 | 100% |  |  | Labor [21.04 h]; Foreman [10.52 h]; Operator [42.08 h]; Surveyor [10.52 h]; Surveyor Helper [10.52 h]; Loader [10.8 h]; Water Tanker [10.8 h]; Dump Truck [10.8 h]; Plate Compactor [10.8 h]; 3.51m - 4.5m [3.48] | 7,124.57 | 7,124.57 | 0.00131831910151242 | Cons. | Z2 | Storm | Cons | CS.UNSC | GRPs | SUB.C | Serv. Rd | Serv.Rd |
| B6.33 42 11.31-1 6 |  | Pipe Laying (67.47% Completed) | 26.1d | 2026-08-16 A | 2026-09-15 A | B6.33 42 11.31-1 4 FF | 100% |  |  | Labor [21.04 h]; Foreman [10.52 h]; Plumber Helper [10.52 h]; Plumber [10.52 h]; Operator [10.52 h]; Surveyor [10.52 h]; Surveyor Helper [10.52 h]; Mobile Crane [10.8 h]; 3.51m - 4.5m [31.36] | 64,152.69 | 64,152.69 | 0.0118707051839724 | Cons. | Z2 | Storm | Cons | CS.UNSC | GRPs | SUB.C | Serv. Rd | Serv.Rd |
| B6.33 42 11.31-1 8 |  | Embedment & Test (67.47% Completed) | 23d | 2026-08-20 A | 2026-09-15 A | B6.33 42 11.31-1 6 FF | 100% |  |  | Labor [42.08 h]; Foreman [21.04 h]; Plumber Helper [21.04 h]; Plumber [21.04 h]; Operator [42.08 h]; Surveyor [21.04 h]; Surveyor Helper [21.04 h]; Loader [21.59 h]; Water Tanker [21.59 h]; Dump Truck [21.59 h]; Plate Compactor [21.59 h]; Roller Compactor [21.59 h]; 3.51m - 4.5m [13.95] | 28,529.82 | 28,529.82 | 0.00527910967641037 | Cons. | Z2 | Storm | Cons | CS.UNSC | GRPs | SUB.C | Serv. Rd | Serv.Rd |
| B6.33 42 11.31-1 10 |  | Backfilling & Warrning Tape (67.47% Completed) | 19d | 2026-08-25 A | 2026-09-15 A | B6.33 42 11.31-1 8 FF | 100% |  |  | Labor [52.6 h]; Foreman [26.3 h]; Operator [105.21 h]; Surveyor [26.3 h]; Surveyor Helper [26.3 h]; Loader [26.99 h]; Water Tanker [26.99 h]; Dump Truck [26.99 h]; Plate Compactor [26.99 h]; Roller Compactor [26.99 h]; 3.51m - 4.5m [6.97] | 14,249.15 | 14,249.15 | 0.00263663820302486 | Cons. | Z2 | Storm | Cons | CS.UNSC | GRPs | SUB.C | Serv. Rd | Serv.Rd |
| B6.33 42 11.31-1 4_R |  | Sand Bedding(Rem) | 2.28d | 2026-10-21 | 2026-10-24 | B6.33 42 11.31-1 2, B6.33 42 11.31-1 4 |  | 111.04d | 0d | Labor [10.14 h]; Foreman [5.07 h]; Operator [20.29 h]; Surveyor [5.07 h]; Surveyor Helper [5.07 h]; Loader [5.2 h]; Water Tanker [5.2 h]; Dump Truck [5.2 h]; Plate Compactor [5.2 h]; 3.51m - 4.5m [1.68] | 3,434.57 |  | 0.00131831910151242 | Cons. | Z2 | Storm | Cons | CS.UNSC | GRPs | SUB.C | Serv. Rd | Serv.Rd |
| B6.33 42 11.31-1 6_R |  | Pipe Laying(Rem) | 2.28d | 2026-10-21 | 2026-10-24 | B6.33 42 11.31-1 4_R FF, B6.33 42 11.31-1 6 |  | 111.04d | 0.56d | Labor [10.14 h]; Foreman [5.07 h]; Plumber Helper [5.07 h]; Plumber [5.07 h]; Operator [5.07 h]; Surveyor [5.07 h]; Surveyor Helper [5.07 h]; Mobile Crane [5.2 h]; 3.51m - 4.5m [15.12] | 30,926.37 |  | 0.0118707051839724 | Cons. | Z2 | Storm | Cons | CS.UNSC | GRPs | SUB.C | Serv. Rd | Serv.Rd |
| B6.33 42 11.31-1 8_R |  | Embedment & Test(Rem) | 2.84d | 2026-10-21 | 2026-10-24 | B6.33 42 11.31-1 6_R FF, B6.33 42 11.31-1 8 |  | 110.48d | 4.1d | Labor [20.29 h]; Foreman [10.14 h]; Plumber Helper [10.14 h]; Plumber [10.14 h]; Operator [20.29 h]; Surveyor [10.14 h]; Surveyor Helper [10.14 h]; Loader [10.41 h]; Water Tanker [10.41 h]; Dump Truck [10.41 h]; Plate Compactor [10.41 h]; Roller Compactor [10.41 h]; 3.51m - 4.5m [6.72] | 13,753.49 |  | 0.00527910967641037 | Cons. | Z2 | Storm | Cons | CS.UNSC | GRPs | SUB.C | Serv. Rd | Serv.Rd |
| B6.33 42 11.31-1 10_R |  | Backfilling & Warrning Tape(Rem) | 2.94d | 2026-10-26 | 2026-10-28 | B6.33 42 11.31-1 8_R FF, B6.33 42 11.31-1 10, B6.33 42 11.02 5_R |  | 106.38d |  | Labor [25.36 h]; Foreman [12.68 h]; Operator [50.72 h]; Surveyor [12.68 h]; Surveyor Helper [12.68 h]; Loader [13.01 h]; Water Tanker [13.01 h]; Dump Truck [13.01 h]; Plate Compactor [13.01 h]; Roller Compactor [13.01 h]; 3.51m - 4.5m [3.36] | 6,869.15 |  | 0.00263663820302486 | Cons. | Z2 | Storm | Cons | CS.UNSC | GRPs | SUB.C | Serv. Rd | Serv.Rd |

| ID | WBS | Activity | Duration | Start | Finish | Predecessors | Complete | Planned start | Planned finish | Total float | Resources | Cost | Actual cost | Weight % | DMM2 Weekly Progress | DMM2 Zones | Networks & Stations | DMM2 Phases | UNASCO | Networks Components | Subcontractors works | Dmm2 Roads | Yellow Sheet |
| --- | --- | --- | --- | --- | --- | --- | --- | --- | --- | --- | --- | --- | --- | --- | --- | --- | --- | --- | --- | --- | --- | --- | --- |
|  | Strom Manholes | **Manholes** |  | 2026-08-10 | 2026-10-26 |  |  |  |  |  |  |  |  |  |  |  |  |  |  |  |  |  |  |
|  | 2 | **?1500** |  | 2026-08-15 | 2026-10-26 |  |  |  |  |  |  |  |  |  |  |  |  |  |  |  |  |  |  |
|  | 1 | **Depth From 2.5m to 3.5m** |  | 2026-08-15 | 2026-10-26 |  |  |  |  |  |  |  |  |  |  |  |  |  |  |  |  |  |  |
| B6.33 05 39.01.3327 |  | Excavation & Compaction | 1d | 2026-08-15 A | 2026-08-16 A | B6.33 42 11.31-1 2 | 100% |  |  |  | Labor [28.35 h]; Foreman [14.17 h]; Operator [28.35 h]; Surveyor [14.17 h]; Surveyor Helper [14.17 h]; Excavator (With Bucket) [16 h]; Water Tanker [16 h]; Dump Truck [16 h]; Plate Compactor [16 h]; MH depth 2.51 - 3.5m [0.26] | 3,722.58 | 3,722.58 | 0.00193019830555769 | Cons. | Z2 | Storm | Cons | CS.UNSC | Manhole | SUB.C | Serv. Rd | Serv.Rd |
| B6.33 05 39.01.3337 |  | Blinding Conc, & RC Base (75.00% Completed) | 24d | 2026-08-19 A | 2026-09-15 A | B6.33 05 39.01.3327 | 100% |  |  |  | Labor [35.08 h]; Foreman [17.54 h]; Laboratory Officer [17.54 h]; Carpenter [17.54 h]; Steelfixer [17.54 h]; Mason [17.54 h]; MH depth 2.51 - 3.5m [0.18] | 2,633.16 | 2,633.16 | 0.00182042914525102 | Cons. | Z2 | Storm | Cons | CS.UNSC | Manhole | SUB.C | Serv. Rd | Serv.Rd |
| B6.33 05 39.01.3347 |  | Manhole Installation (75.00% Completed) | 21d | 2026-08-23 A | 2026-09-15 A | B6.33 05 39.01.3337 SS | 100% |  |  |  | Labor [23.39 h]; Operator [23.39 h]; Surveyor [11.69 h]; Surveyor Helper [11.69 h]; Boom Truck [12 h]; Mobile Crane [12 h]; MH depth 2.51 - 3.5m [0.6] | 8,636.6 | 8,636.6 | 0.00597090210688867 | Cons. | Z2 | Storm | Cons | CS.UNSC | Manhole | SUB.C | Serv. Rd | Serv.Rd |
| B6.33 05 39.01.3367 |  | Backfilling (75.00% Completed) | 20d | 2026-08-24 A | 2026-09-15 A | B6.33 05 13.01 5 SS, B6.33 05 13.07 5 SS | 100% |  |  |  | Labor [58.47 h]; Foreman [29.24 h]; Operator [58.47 h]; Surveyor [29.24 h]; Surveyor Helper [29.24 h]; Loader [30 h]; Water Tanker [30 h]; Dump Truck [30 h]; Plate Compactor [30 h]; MH depth 2.51 - 3.5m [0.25] | 3,664.35 | 3,664.35 | 0.00253334051883564 | Cons. | Z2 | Storm | Cons | CS.UNSC | Manhole | SUB.C | Serv. Rd | Serv.Rd |
| B6.33 05 39.01.3337_R |  | Blinding Conc, & RC Base(Rem) | 2d | 2026-09-19 A | 2026-09-20 A | B6.33 05 39.01.3327, B6.33 05 39.01.3337 | 100% | 2026-09-16 | 2026-09-17 |  | Labor [11.69 h]; Foreman [5.85 h]; Laboratory Officer [5.85 h]; Carpenter [5.85 h]; Steelfixer [5.85 h]; Mason [5.85 h]; MH depth 2.51 - 3.5m [0.06] | 877.72 | 877.72 | 0.00182042914525102 | Cons. | Z2 | Storm | Cons | CS.UNSC | Manhole | SUB.C | Serv. Rd | Serv.Rd |
| B6.33 05 39.01.3347_R |  | Manhole Installation(Rem) | 2d | 2026-09-21 A | 2026-09-24 A | B6.33 05 39.01.3337_R SS, B6.33 05 39.01.3347 | 100% | 2026-09-16 | 2026-09-17 |  | Labor [7.8 h]; Operator [7.8 h]; Surveyor [3.9 h]; Surveyor Helper [3.9 h]; Boom Truck [4 h]; Mobile Crane [4 h]; MH depth 2.51 - 3.5m [0.2] | 2,878.87 | 2,878.87 | 0.00597090210688867 | Cons. | Z2 | Storm | Cons | CS.UNSC | Manhole | SUB.C | Serv. Rd | Serv.Rd |
| B6.33 05 39.01.3367_R |  | Backfilling(Rem) | 4d | 2026-10-17 A | 2026-10-19 A | B6.33 05 39.01.3357 FF, B6.33 05 13.01 5_R SS, B6.33 05 13.07 5_R SS, B6.33 05 39.01.3367 | 100% | 2026-10-24 | 2026-10-28 |  | Labor [19.49 h]; Foreman [9.75 h]; Operator [19.49 h]; Surveyor [9.75 h]; Surveyor Helper [9.75 h]; Loader [10 h]; Water Tanker [10 h]; Dump Truck [10 h]; Plate Compactor [10 h]; MH depth 2.51 - 3.5m [0.08] | 1,221.45 | 1,221.45 | 0.00253334051883564 | Cons. | Z2 | Storm | Cons | CS.UNSC | Manhole | SUB.C | Serv. Rd | Serv.Rd |
| B6.33 05 39.01.3357 |  | Test, Internal Finishing, Benching & Cover | 5d | 2026-10-21 | 2026-10-26 | B6.33 05 39.01.3347_R |  |  |  | 108.32d | Labor [62.37 h]; Foreman [31.18 h]; Plumber Helper [31.18 h]; Plumber [31.18 h]; Mason [31.18 h]; MH depth 2.51 - 3.5m [0.17] | 2,481.67 |  | 0.00128677283889427 | Cons. | Z2 | Storm | Cons | CS.UNSC | Manhole | SUB.C | Serv. Rd | Serv.Rd |
|  | 3 | **?2000** |  | 2026-08-10 | 2026-10-26 |  |  |  |  |  |  |  |  |  |  |  |  |  |  |  |  |  |  |
|  | 3 | **Depth From 2.5m to 3.5m** |  | 2026-08-19 | 2026-10-26 |  |  |  |  |  |  |  |  |  |  |  |  |  |  |  |  |  |  |
| B6.33 05 39.01.3377 |  | Excavation & Compaction (75.00% Completed) | 24d | 2026-08-19 A | 2026-09-15 A | B6.33 05 39.01.3327 | 100% |  |  |  | Labor [23.39 h]; Foreman [11.69 h]; Operator [23.39 h]; Surveyor [11.69 h]; Surveyor Helper [11.69 h]; Excavator (With Bucket) [12 h]; Water Tanker [12 h]; Dump Truck [12 h]; Plate Compactor [12 h]; Storm MH depth 2.51 - 3.5m [0.47] | 8,073.81 | 8,073.81 | 0.00208346832855844 | Cons. | Z2 | Storm | Cons | CS.UNSC | Manhole | SUB.C | Serv. Rd | Serv.Rd |
| B6.33 05 39.01.3387 |  | Blinding Conc, & RC Base (75.00% Completed) | 22d | 2026-08-22 A | 2026-09-15 A | B6.33 05 39.01.3377 SS | 100% |  |  |  | Labor [35.08 h]; Foreman [17.54 h]; Laboratory Officer [17.54 h]; Carpenter [17.54 h]; Steelfixer [17.54 h]; Mason [17.54 h]; Storm MH depth 2.51 - 3.5m [0.31] | 5,321.37 | 5,321.37 | 0.00137319503473171 | Cons. | Z2 | Storm | Cons | CS.UNSC | Manhole | SUB.C | Serv. Rd | Serv.Rd |
| B6.33 05 39.01.3397 |  | Manhole Installation (75.00% Completed) | 21d | 2026-08-23 A | 2026-09-15 A | B6.33 05 39.01.3387 SS | 100% |  |  |  | Labor [23.39 h]; Operator [23.39 h]; Surveyor [11.69 h]; Surveyor Helper [11.69 h]; Boom Truck [12 h]; Mobile Crane [12 h]; Storm MH depth 2.51 - 3.5m [1.48] | 25,198.98 | 25,198.98 | 0.00625042100380389 | Cons. | Z2 | Storm | Cons | CS.UNSC | Manhole | SUB.C | Serv. Rd | Serv.Rd |
| B6.33 05 39.01.3417 |  | Backfilling (75.00% Completed) | 19d | 2026-08-25 A | 2026-09-15 A | B6.33 05 39.01.3397 | 100% |  |  |  | Labor [58.47 h]; Foreman [29.24 h]; Operator [58.47 h]; Surveyor [29.24 h]; Surveyor Helper [29.24 h]; Loader [30 h]; Water Tanker [30 h]; Dump Truck [30 h]; Plate Compactor [30 h]; Storm MH depth 2.51 - 3.5m [0.68] | 11,629.69 | 11,629.69 | 0.00300107232895791 | Cons. | Z2 | Storm | Cons | CS.UNSC | Manhole | SUB.C | Serv. Rd | Serv.Rd |
| B6.33 05 39.01.3377_R |  | Excavation & Compaction(Rem) | 2d | 2026-10-13 A | 2026-10-15 A | B6.33 05 39.01.3327, B6.33 05 39.01.3377 | 100% | 2026-10-14 | 2026-10-15 |  | Labor [7.8 h]; Foreman [3.9 h]; Operator [7.8 h]; Surveyor [3.9 h]; Surveyor Helper [3.9 h]; Excavator (With Bucket) [4 h]; Water Tanker [4 h]; Dump Truck [4 h]; Plate Compactor [4 h]; Storm MH depth 2.51 - 3.5m [0.16] | 2,691.27 | 2,691.27 | 0.00208346832855844 | Cons. | Z2 | Storm | Cons | CS.UNSC | Manhole | SUB.C | Serv. Rd | Serv.Rd |
| B6.33 05 39.01.3387_R |  | Blinding Conc, & RC Base(Rem) | 2d | 2026-10-14 A | 2026-10-17 A | B6.33 05 39.01.3377_R SS, B6.33 05 39.01.3387 | 100% | 2026-10-14 | 2026-10-15 |  | Labor [11.69 h]; Foreman [5.85 h]; Laboratory Officer [5.85 h]; Carpenter [5.85 h]; Steelfixer [5.85 h]; Mason [5.85 h]; Storm MH depth 2.51 - 3.5m [0.1] | 1,773.79 | 1,773.79 | 0.00137319503473171 | Cons. | Z2 | Storm | Cons | CS.UNSC | Manhole | SUB.C | Serv. Rd | Serv.Rd |
| B6.33 05 39.01.3397_R |  | Manhole Installation(Rem) | 2d | 2026-10-15 A | 2026-10-17 A | B6.33 05 39.01.3387_R SS, B6.33 05 39.01.3397 | 100% | 2026-10-14 | 2026-10-15 |  | Labor [7.8 h]; Operator [7.8 h]; Surveyor [3.9 h]; Surveyor Helper [3.9 h]; Boom Truck [4 h]; Mobile Crane [4 h]; Storm MH depth 2.51 - 3.5m [0.49] | 8,399.66 | 8,399.66 | 0.00625042100380389 | Cons. | Z2 | Storm | Cons | CS.UNSC | Manhole | SUB.C | Serv. Rd | Serv.Rd |
| B6.33 05 39.01.3417_R |  | Backfilling(Rem) | 2.25d | 2026-10-17 A | 2026-10-19 A | B6.33 05 39.01.3407 FF, B6.33 05 39.01.3417 | 100% | 2026-10-19 | 2026-10-21 |  | Labor [19.49 h]; Foreman [9.75 h]; Operator [19.49 h]; Surveyor [9.75 h]; Surveyor Helper [9.75 h]; Loader [10 h]; Water Tanker [10 h]; Dump Truck [10 h]; Plate Compactor [10 h]; Storm MH depth 2.51 - 3.5m [0.23] | 3,876.56 | 3,876.56 | 0.00300107232895791 | Cons. | Z2 | Storm | Cons | CS.UNSC | Manhole | SUB.C | Serv. Rd | Serv.Rd |
| B6.33 05 39.01.3407 |  | Test, Internal Finishing, Benching & Cover | 5d | 2026-10-21 | 2026-10-26 | B6.33 05 39.01.3397_R |  |  |  | 108.32d | Labor [62.37 h]; Foreman [31.18 h]; Plumber Helper [31.18 h]; Plumber [31.18 h]; Mason [31.18 h]; Storm MH depth 2.51 - 3.5m [0.42] | 7,095.17 |  | 0.00137319503473171 | Cons. | Z2 | Storm | Cons | CS.UNSC | Manhole | SUB.C | Serv. Rd | Serv.Rd |
|  | 1 | **Depth From 3.5m to 4.5m** |  | 2026-08-13 | 2026-10-26 |  |  |  |  |  |  |  |  |  |  |  |  |  |  |  |  |  |  |
| B6.33 05 39.01.3427 |  | Excavation & Compaction (75.00% Completed) | 29d | 2026-08-13 A | 2026-09-15 A | B6.33 05 39.01.3377 SS | 100% |  |  |  | Labor [23.39 h]; Foreman [11.69 h]; Operator [23.39 h]; Surveyor [11.69 h]; Surveyor Helper [11.69 h]; Excavator (With Bucket) [12 h]; Water Tanker [12 h]; Dump Truck [12 h]; Plate Compactor [12 h]; Storm MH depth 3.51 -4.5m [0.43] | 9,682.38 | 9,682.38 | 0.00249450617796315 | Cons. | Z2 | Storm | Cons | CS.UNSC | Manhole | SUB.C | Serv. Rd | Serv.Rd |
| B6.33 05 39.01.3437 |  | Blinding Conc, & RC Base (75.00% Completed) | 27d | 2026-08-16 A | 2026-09-15 A | B6.33 05 39.01.3427 SS | 100% |  |  |  | Labor [35.08 h]; Foreman [17.54 h]; Laboratory Officer [17.54 h]; Carpenter [17.54 h]; Steelfixer [17.54 h]; Mason [17.54 h]; Storm MH depth 3.51 -4.5m [0.29] | 6,535.61 | 6,535.61 | 0.00168379167012513 | Cons. | Z2 | Storm | Cons | CS.UNSC | Manhole | SUB.C | Serv. Rd | Serv.Rd |
| B6.33 05 39.01.3447 |  | Manhole Installation (75.00% Completed) | 24d | 2026-08-19 A | 2026-09-15 A | B6.33 05 39.01.3437 SS | 100% |  |  |  | Labor [23.39 h]; Operator [23.39 h]; Surveyor [11.69 h]; Surveyor Helper [11.69 h]; Boom Truck [12 h]; Mobile Crane [12 h]; Storm MH depth 3.51 -4.5m [1.41] | 31,559.41 | 31,559.41 | 0.00813076259576856 | Cons. | Z2 | Storm | Cons | CS.UNSC | Manhole | SUB.C | Serv. Rd | Serv.Rd |
| B6.33 05 39.01.3467 |  | Backfilling (75.00% Completed) | 21d | 2026-08-23 A | 2026-09-15 A | B6.33 05 39.01.3417 | 100% |  |  |  | Labor [58.47 h]; Foreman [29.24 h]; Operator [58.47 h]; Surveyor [29.24 h]; Surveyor Helper [29.24 h]; Loader [30 h]; Water Tanker [30 h]; Dump Truck [30 h]; Plate Compactor [30 h]; Storm MH depth 3.51 -4.5m [0.58] | 13,071.25 | 13,071.25 | 0.00336759197047231 | Cons. | Z2 | Storm | Cons | CS.UNSC | Manhole | SUB.C | Serv. Rd | Serv.Rd |
| B6.33 05 39.01.3467_R |  | Backfilling(Rem) | 2d | 2026-09-22 A | 2026-09-24 A | B6.33 05 39.01.3457 FF, B6.33 05 39.01.3467 | 100% |  |  |  | Labor [19.49 h]; Foreman [9.75 h]; Operator [19.49 h]; Surveyor [9.75 h]; Surveyor Helper [9.75 h]; Loader [10 h]; Water Tanker [10 h]; Dump Truck [10 h]; Plate Compactor [10 h]; Storm MH depth 3.51 -4.5m [0.19] | 4,357.08 | 4,357.08 | 0.00336759197047231 | Cons. | Z2 | Storm | Cons | CS.UNSC | Manhole | SUB.C | Serv. Rd | Serv.Rd |
| B6.33 05 39.01.3427_R |  | Excavation & Compaction(Rem) | 2d | 2026-10-14 A | 2026-10-15 A | B6.33 05 39.01.3377_R SS, B6.33 05 39.01.3427 | 100% |  |  |  | Labor [7.8 h]; Foreman [3.9 h]; Operator [7.8 h]; Surveyor [3.9 h]; Surveyor Helper [3.9 h]; Excavator (With Bucket) [4 h]; Water Tanker [4 h]; Dump Truck [4 h]; Plate Compactor [4 h]; Storm MH depth 3.51 -4.5m [0.14] | 3,227.46 | 3,227.46 | 0.00249450617796315 | Cons. | Z2 | Storm | Cons | CS.UNSC | Manhole | SUB.C | Serv. Rd | Serv.Rd |
| B6.33 05 39.01.3437_R |  | Blinding Conc, & RC Base(Rem) | 2d | 2026-10-14 A | 2026-10-15 A | B6.33 05 39.01.3427_R SS, B6.33 05 39.01.3437 | 100% |  |  |  | Labor [11.69 h]; Foreman [5.85 h]; Laboratory Officer [5.85 h]; Carpenter [5.85 h]; Steelfixer [5.85 h]; Mason [5.85 h]; Storm MH depth 3.51 -4.5m [0.1] | 2,178.54 | 2,178.54 | 0.00168379167012513 | Cons. | Z2 | Storm | Cons | CS.UNSC | Manhole | SUB.C | Serv. Rd | Serv.Rd |
| B6.33 05 39.01.3447_R |  | Manhole Installation(Rem) | 2d | 2026-10-14 A | 2026-10-15 A | B6.33 05 39.01.3437_R SS, B6.33 05 39.01.3447 | 100% |  |  |  | Labor [7.8 h]; Operator [7.8 h]; Surveyor [3.9 h]; Surveyor Helper [3.9 h]; Boom Truck [4 h]; Mobile Crane [4 h]; Storm MH depth 3.51 -4.5m [0.47] | 10,519.8 | 10,519.8 | 0.00813076259576856 | Cons. | Z2 | Storm | Cons | CS.UNSC | Manhole | SUB.C | Serv. Rd | Serv.Rd |
| B6.33 05 39.01.3457 |  | Test, Internal Finishing, Benching & Cover | 5d | 2026-10-21 | 2026-10-26 | B6.33 05 39.01.3447_R |  |  |  | 108.32d | Labor [62.37 h]; Foreman [31.18 h]; Plumber Helper [31.18 h]; Plumber [31.18 h]; Mason [31.18 h]; Storm MH depth 3.51 -4.5m [0.39] | 8,714.14 |  | 0.00168379167012513 | Cons. | Z2 | Storm | Cons | CS.UNSC | Manhole | SUB.C | Serv. Rd | Serv.Rd |

| ID | WBS | Activity | Duration | Start | Finish | Predecessors | Complete | Remaining | Planned start | Planned finish | Total float | Free float | Resources | Cost | Actual cost | Weight % | DMM2 Weekly Progress | DMM2 Zones | Networks & Stations | DMM2 Phases | UNASCO | Networks Components | Subcontractors works | Dmm2 Roads | Yellow Sheet |
| --- | --- | --- | --- | --- | --- | --- | --- | --- | --- | --- | --- | --- | --- | --- | --- | --- | --- | --- | --- | --- | --- | --- | --- | --- | --- |
|  | 2 | **Depth From 4.5m to 5.5m** |  | 2026-08-10 | 2026-10-26 |  |  |  |  |  |  |  |  |  |  |  |  |  |  |  |  |  |  |  |  |
| B6.33 05 39.01.3477 |  | Excavation & Compaction (75.00% Completed) | 32d | 2026-08-10 A | 2026-09-15 A | B6.33 05 39.01.3427 SS | 100% |  |  |  |  |  | Labor [23.39 h]; Foreman [11.69 h]; Operator [23.39 h]; Surveyor [11.69 h]; Surveyor Helper [11.69 h]; Excavator (With Bucket) [12 h]; Water Tanker [12 h]; Dump Truck [12 h]; Plate Compactor [12 h]; MH depth 4.51 -5.5m [0.11] | 2,540.31 | 2,540.31 | 0.000656023273078834 | Cons. | Z2 | Storm | Cons | CS.UNSC | Manhole | SUB.C | Serv. Rd | Serv.Rd |
| B6.33 05 39.01.3487 |  | Blinding Conc, & RC Base (75.00% Completed) | 29d | 2026-08-13 A | 2026-09-15 A | B6.33 05 39.01.3477 SS | 100% |  |  |  |  |  | Labor [35.08 h]; Foreman [17.54 h]; Laboratory Officer [17.54 h]; Carpenter [17.54 h]; Steelfixer [17.54 h]; Mason [17.54 h]; MH depth 4.51 -5.5m [0.08] | 1,778.21 | 1,778.21 | 0.000459216291155183 | Cons. | Z2 | Storm | Cons | CS.UNSC | Manhole | SUB.C | Serv. Rd | Serv.Rd |
| B6.33 05 39.01.3497 |  | Manhole Installation (75.00% Completed) | 26d | 2026-08-17 A | 2026-09-15 A | B6.33 05 39.01.3487 SS | 100% |  |  |  |  |  | Labor [23.39 h]; Operator [23.39 h]; Surveyor [11.69 h]; Surveyor Helper [11.69 h]; Boom Truck [12 h]; Mobile Crane [12 h]; MH depth 4.51 -5.5m [0.35] | 8,280.03 | 8,280.03 | 0.00213828126316598 | Cons. | Z2 | Storm | Cons | CS.UNSC | Manhole | SUB.C | Serv. Rd | Serv.Rd |
| B6.33 05 39.01.3517 |  | Backfilling (75.00% Completed) | 23d | 2026-08-20 A | 2026-09-15 A | B6.33 05 39.01.3367 SS, B6.33 05 39.01.4017 SS | 100% |  |  |  |  |  | Labor [58.47 h]; Foreman [29.24 h]; Operator [58.47 h]; Surveyor [29.24 h]; Surveyor Helper [29.24 h]; Loader [30 h]; Water Tanker [30 h]; Dump Truck [30 h]; Plate Compactor [30 h]; MH depth 4.51 -5.5m [0.14] | 3,302.4 | 3,302.4 | 0.000852830255002487 | Cons. | Z2 | Storm | Cons | CS.UNSC | Manhole | SUB.C | Serv. Rd | Serv.Rd |
| B6.33 05 39.01.3477_R |  | Excavation & Compaction(Rem) | 2d | 2026-10-14 A | 2026-10-15 A | B6.33 05 39.01.3427_R SS, B6.33 05 39.01.3477 | 100% |  |  |  |  |  | Labor [7.8 h]; Foreman [3.9 h]; Operator [7.8 h]; Surveyor [3.9 h]; Surveyor Helper [3.9 h]; Excavator (With Bucket) [4 h]; Water Tanker [4 h]; Dump Truck [4 h]; Plate Compactor [4 h]; MH depth 4.51 -5.5m [0.04] | 846.77 | 846.77 | 0.000656023273078834 | Cons. | Z2 | Storm | Cons | CS.UNSC | Manhole | SUB.C | Serv. Rd | Serv.Rd |
| B6.33 05 39.01.3487_R |  | Blinding Conc, & RC Base(Rem) | 2d | 2026-10-14 A | 2026-10-15 A | B6.33 05 39.01.3477_R SS, B6.33 05 39.01.3487 | 100% |  |  |  |  |  | Labor [11.69 h]; Foreman [5.85 h]; Laboratory Officer [5.85 h]; Carpenter [5.85 h]; Steelfixer [5.85 h]; Mason [5.85 h]; MH depth 4.51 -5.5m [0.03] | 592.74 | 592.74 | 0.000459216291155183 | Cons. | Z2 | Storm | Cons | CS.UNSC | Manhole | SUB.C | Serv. Rd | Serv.Rd |
| B6.33 05 39.01.3497_R |  | Manhole Installation(Rem) | 2d | 2026-10-14 A | 2026-10-15 A | B6.33 05 39.01.3487_R SS, B6.33 05 39.01.3497 | 100% |  |  |  |  |  | Labor [7.8 h]; Operator [7.8 h]; Surveyor [3.9 h]; Surveyor Helper [3.9 h]; Boom Truck [4 h]; Mobile Crane [4 h]; MH depth 4.51 -5.5m [0.12] | 2,760.01 | 2,760.01 | 0.00213828126316598 | Cons. | Z2 | Storm | Cons | CS.UNSC | Manhole | SUB.C | Serv. Rd | Serv.Rd |
| B6.33 05 39.01.3517_R |  | Backfilling(Rem) | 6d | 2026-10-15 A | 2026-10-18 A | B6.33 05 39.01.3507 FF, B6.33 05 39.01.3367_R SS, B6.33 05 39.01.4017_R SS, B6.33 05 39.01.3517 | 100% |  | 2026-10-24 | 2026-10-31 |  |  | Labor [19.49 h]; Foreman [9.75 h]; Operator [19.49 h]; Surveyor [9.75 h]; Surveyor Helper [9.75 h]; Loader [10 h]; Water Tanker [10 h]; Dump Truck [10 h]; Plate Compactor [10 h]; MH depth 4.51 -5.5m [0.05] | 1,100.8 | 1,100.8 | 0.000852830255002487 | Cons. | Z2 | Storm | Cons | CS.UNSC | Manhole | SUB.C | Serv. Rd | Serv.Rd |
| B6.33 05 39.01.3507 |  | Test, Internal Finishing, Benching & Cover | 5d | 2026-10-21 | 2026-10-26 | B6.33 05 39.01.3497_R |  |  |  |  | 108.32d |  | Labor [62.37 h]; Foreman [31.18 h]; Plumber Helper [31.18 h]; Plumber [31.18 h]; Mason [31.18 h]; MH depth 4.51 -5.5m [0.1] | 2,370.95 |  | 0.000459216291155183 | Cons. | Z2 | Storm | Cons | CS.UNSC | Manhole | SUB.C | Serv. Rd | Serv.Rd |
|  | Catch Basins | **Catch Basins** |  | 2026-08-09 | 2026-10-24 |  |  |  |  |  |  |  |  |  |  |  |  |  |  |  |  |  |  |  |  |
|  | Sing | **Single** |  | 2026-10-17 | 2026-10-24 |  |  |  |  |  |  |  |  |  |  |  |  |  |  |  |  |  |  |  |  |
| B6.33 05 40.01.330 |  | Excavation, Compaction & Vapour Barrier | 3d | 2026-10-17 A | 2026-10-22 | B6.33 05 39.01.3477_R | 55% | 1.35d | 2026-10-17 | 2026-10-19 | 111.97d |  | Labor [31.18 h]; Foreman [15.59 h]; Operator [31.18 h]; Surveyor [15.59 h]; Surveyor Helper [15.59 h]; Excavator (With Bucket) [16 h]; Water Tanker [16 h]; Dump Truck [16 h]; Roller Compactor [16 h]; Single Catch basin [2.99] | 13,519.66 | 7,435.81 | 0.00296566869933904 | Cons. | Z2 | Storm | Cons | CS.UNSC | CBs | SUB.C | Serv. Rd | Serv.Rd |
| B6.33 05 40.01.340 |  | Blinding Conc. | 3d | 2026-10-18 A | 2026-10-22 | B6.33 05 40.01.330 | 55% | 1.35d | 2026-10-20 | 2026-10-22 | 111.97d |  | Labor [31.18 h]; Foreman [15.59 h]; Laboratory Officer [15.59 h]; Carpenter [15.59 h]; Steelfixer [15.59 h]; Mason [15.59 h]; Single Catch basin [1.99] | 8,993.51 | 3,221.56 | 0.00197281439564727 | Cons. | Z2 | Storm | Cons | CS.UNSC | CBs | SUB.C | Serv. Rd | Serv.Rd |
| B6.33 05 40.01.350 |  | Catch Basin Installation | 4d | 2026-10-19 A | 2026-10-22 | B6.33 05 40.01.340 | 55% | 1.8d | 2026-10-24 | 2026-10-27 | 111.52d |  | Labor [46.78 h]; Foreman [23.39 h]; Carpenter [23.39 h]; Steelfixer [23.39 h]; Mason [23.39 h]; Operator [46.78 h]; Surveyor [23.39 h]; Surveyor Helper [23.39 h]; Boom Truck [24 h]; Single Catch basin [8.93] | 40,382.64 | 12,752.41 | 0.00885832346280832 | Cons. | Z2 | Storm | Cons | CS.UNSC | CBs | SUB.C | Serv. Rd | Serv.Rd |
| B6.33 05 40.01.360 |  | Backfilling, DI Frame & Grate Cover Fixing | 6d | 2026-10-19 A | 2026-10-24 | B6.33 42 11.36-1.2_R, B6.33 42 11.02.5_R | 55% | 2.7d | 2026-10-31 | 2026-11-07 | 110.62d |  | Labor [77.96 h]; Foreman [38.98 h]; Operator [77.96 h]; Surveyor [38.98 h]; Surveyor Helper [38.98 h]; Loader [40 h]; Water Tanker [40 h]; Dump Truck [40 h]; Plate Compactor [40 h]; Single Catch basin [5.96] | 26,921.76 | 6,628.78 | 0.00590554897520555 | Cons. | Z2 | Storm | Cons | CS.UNSC | CBs | SUB.C | Serv. Rd | Serv.Rd |
|  | Dou | **Double** |  | 2026-10-13 | 2026-10-24 |  |  |  |  |  |  |  |  |  |  |  |  |  |  |  |  |  |  |  |  |
| B6.33 05 40.01.810 |  | Excavation, Compaction & Vapour Barrier | 3d | 2026-10-13 A | 2026-10-22 | B6.33 05 40.01.330 | 55% | 1.35d | 2026-10-20 | 2026-10-22 | 111.97d |  | Labor [31.18 h]; Foreman [15.59 h]; Operator [31.18 h]; Surveyor [15.59 h]; Surveyor Helper [15.59 h]; Excavator (With Bucket) [16 h]; Water Tanker [16 h]; Dump Truck [16 h]; Roller Compactor [16 h]; Double Catch basin [0.6] | 5,258.04 | 2,891.92 | 0.000879450288447266 | Cons. | Z2 | Storm | Cons | CS.UNSC | CBs | SUB.C | Serv. Rd | Serv.Rd |
| B6.33 05 40.01.820 |  | Blinding Conc. | 3d | 2026-10-15 A | 2026-10-22 | B6.33 05 40.01.810 | 55% | 1.35d | 2026-10-24 | 2026-10-26 | 111.97d |  | Labor [31.18 h]; Foreman [15.59 h]; Laboratory Officer [15.59 h]; Carpenter [15.59 h]; Steelfixer [15.59 h]; Mason [15.59 h]; Double Catch basin [0.39] | 3,455.28 | 2,081.33 | 0.000577924475265344 | Cons. | Z2 | Storm | Cons | CS.UNSC | CBs | SUB.C | Serv. Rd | Serv.Rd |
| B6.33 05 40.01.830 |  | Catch Basin Installation | 4d | 2026-10-17 A | 2026-10-22 | B6.33 05 40.01.820, B6.33 05 40.01.350 | 55% | 1.8d | 2026-10-28 | 2026-11-01 | 111.52d |  | Labor [46.78 h]; Foreman [23.39 h]; Carpenter [23.39 h]; Steelfixer [23.39 h]; Mason [23.39 h]; Operator [46.78 h]; Surveyor [23.39 h]; Surveyor Helper [23.39 h]; Boom Truck [24 h]; Double Catch basin [1.82] | 16,074.61 | 7,483.01 | 0.00268861205772004 | Cons. | Z2 | Storm | Cons | CS.UNSC | CBs | SUB.C | Serv. Rd | Serv.Rd |
| B6.33 05 40.01.840 |  | Backfilling, DI Frame & Grate Cover Fixing | 6d | 2026-10-19 A | 2026-10-24 | B6.33 05 40.01.360, B6.33 05 63.053, B6.33 05 63.063 | 55% | 2.7d | 2026-11-07 | 2026-11-14 | 66.22d | 50.62d | Labor [77.96 h]; Foreman [38.98 h]; Operator [77.96 h]; Surveyor [38.98 h]; Surveyor Helper [38.98 h]; Loader [40 h]; Water Tanker [40 h]; Dump Truck [40 h]; Plate Compactor [40 h]; Double Catch basin [1.19] | 10,516.1 | 2,589.31 | 0.00175890508448974 | Cons. | Z2 | Storm | Cons | CS.UNSC | CBs | SUB.C | Serv. Rd | Serv.Rd |
|  | UPVC | **UPVC** |  | 2026-08-09 | 2026-10-05 |  |  |  |  |  |  |  |  |  |  |  |  |  |  |  |  |  |  |  |  |
|  | UPVC300 | **?300 From 0.0 to 1.5m** |  | 2026-08-09 | 2026-10-05 |  |  |  |  |  |  |  |  |  |  |  |  |  |  |  |  |  |  |  |  |
| B6.33 42 11.35-1.2 |  | Fittings & Pipe Installation (45.36% Completed) | 33d | 2026-08-09 A | 2026-09-15 A | B6.33 42 11.31-1 2 FF | 100% |  |  |  |  |  | Labor [14.15 h]; Foreman [7.07 h]; Plumber Helper [7.07 h]; Plumber [7.07 h]; Surveyor [7.07 h]; Surveyor Helper [7.07 h]; less than 1.5 [84.58] | 50,868.45 | 50,868.45 | 0.0603343421083148 | Cons. | Z2 | Storm | Cons | CS.UNSC | UPVC | SUB.C | Serv. Rd | Serv.Rd |
| B6.33 42 11.35-1.1 |  | Catch Basin Opening Prep. | 3d | 2026-09-29 A | 2026-10-01 A | B6.33 05 40.01.830 | 100% |  | 2026-10-06 | 2026-10-08 |  |  | Labor [31.18 h]; Foreman [15.59 h]; Plumber Helper [15.59 h]; Plumber [15.59 h]; less than 1.5 [46.62] | 28,035.96 | 28,035.96 | 0.0150835855285905 | Cons. | Z2 | Storm | Cons | CS.UNSC | UPVC | SUB.C | Serv. Rd | Serv.Rd |
| B6.33 42 11.35-1.2_R |  | Fittings & Pipe Installation(Rem) | 2.09d | 2026-10-03 A | 2026-10-05 A | B6.33 42 11.35-1.1 FF, B6.33 42 11.35-1.2 | 100% |  | 2026-10-06 | 2026-10-08 |  |  | Labor [17.04 h]; Foreman [8.52 h]; Plumber Helper [8.52 h]; Plumber [8.52 h]; Surveyor [8.52 h]; Surveyor Helper [8.52 h]; less than 1.5 [101.88] | 61,275.4 | 61,275.4 | 0.0603343421083148 | Cons. | Z2 | Storm | Cons | CS.UNSC | UPVC | SUB.C | Serv. Rd | Serv.Rd |

| ID | WBS | Activity | Duration | Start | Finish | Predecessors | Complete | Planned start | Planned finish | Total float | Free float | Resources | Cost | Actual cost | Weight % | DMM2 Weekly Progress | DMM2 Zones | Networks & Stations | DMM2 Phases | UNASCO | Networks Components | Subcontractors works | Dmm2 Roads | Yellow Sheet | All Electrical Scope |
| --- | --- | --- | --- | --- | --- | --- | --- | --- | --- | --- | --- | --- | --- | --- | --- | --- | --- | --- | --- | --- | --- | --- | --- | --- | --- |
|  | UPVC3001 | **?400 From 0.0 to 1.5m** |  | 2026-08-12 | 2026-10-03 |  |  |  |  |  |  |  |  |  |  |  |  |  |  |  |  |  |  |  |  |
| B6.33 42 11.36-1.2 |  | Fittings & Pipe Installation (36.29% Completed) | 30d | 2026-08-12 A | 2026-09-15 A | B6.33 42 11.35-1.2 SS+1d, B6.33 42 11.35-1.2 FF+1d | 100% |  |  |  |  | Labor [11.32 h]; Foreman [5.66 h]; Plumber Helper [5.66 h]; Plumber [5.66 h]; Surveyor [5.66 h]; Surveyor Helper [5.66 h]; less than 1.5 [67.66] | 40,694.76 | 40,694.76 | 0.0603343421083148 | Cons. | Z2 | Storm | Cons | CS.UNSC | UPVC | SUB.C | Serv. Rd | Serv.Rd |  |
| B6.33 42 11.36-1.1 |  | Catch Basin Opening Prep. | 3d | 2026-09-26 A | 2026-09-29 A | B6.33 42 11.35-1.1 | 100% | 2026-10-10 | 2026-10-12 |  |  | Labor [31.18 h]; Foreman [15.59 h]; Plumber Helper [15.59 h]; Plumber [15.59 h]; less than 1.5 [46.62] | 28,035.96 | 28,035.96 | 0.0150835855285905 | Cons. | Z2 | Storm | Cons | CS.UNSC | UPVC | SUB.C | Serv. Rd | Serv.Rd |  |
| B6.33 42 11.36-1.2_R |  | Fittings & Pipe Installation(Rem) | 2.09d | 2026-09-29 A | 2026-10-03 A | B6.33 42 11.36-1.1 FF, B6.33 42 11.36-1.2 | 100% | 2026-10-10 | 2026-10-12 |  |  | Labor [19.87 h]; Foreman [9.93 h]; Plumber Helper [9.93 h]; Plumber [9.93 h]; Surveyor [9.93 h]; Surveyor Helper [9.93 h]; less than 1.5 [118.8] | 71,449.09 | 71,449.09 | 0.0603343421083148 | Cons. | Z2 | Storm | Cons | CS.UNSC | UPVC | SUB.C | Serv. Rd | Serv.Rd |  |
|  | Dry Networks | **Dry Networks** |  | 2026-11-07 | 2026-12-13 |  |  |  |  |  |  |  |  |  |  |  |  |  |  |  |  |  |  |  |  |
|  | Street Lighting | **Street Lighting** |  | 2026-11-07 | 2026-12-13 |  |  |  |  |  |  |  |  |  |  |  |  |  |  |  |  |  |  |  |  |
|  | SL Poles | **SL Poles** |  | 2026-11-07 | 2026-11-23 |  |  |  |  |  |  |  |  |  |  |  |  |  |  |  |  |  |  |  |  |
|  | Pole (10 M Sngl Arm) | **Pole (10 M Single Arm)** |  | 2026-11-07 | 2026-11-23 |  |  |  |  |  |  |  |  |  |  |  |  |  |  |  |  |  |  |  |  |
| B2.33 71 16.63 |  | Excavation | 2d | 2026-11-07 | 2026-11-09 | B1.2.32 11 26.01.9 |  |  |  | 0d |  | Labor [31.18 h]; Foreman [15.59 h]; Operator [31.18 h]; Surveyor [15.59 h]; Surveyor Helper [15.59 h]; Excavator (With Bucket) [16 h]; Dump Truck [16 h]; Lighting poles with 1 arm, height of ( 10) meters [6.6] | 58,898.5 |  | 0.0112471278804954 | Cons. | Z2 | SL | Cons |  | Pls&Lmn | SUB.C | Serv. Rd | Serv.Rd | allElec |
| B2.33 71 16.64 |  | PC & RC Foundation | 3d | 2026-11-09 | 2026-11-12 | B2.33 71 16.63 |  |  |  | 79d | 0d | Labor [62.37 h]; Foreman [31.18 h]; Laboratory Officer [31.18 h]; Carpenter [31.18 h]; Steelfixer [31.18 h]; Mason [31.18 h]; Lighting poles with 1 arm, height of ( 10) meters [6.6] | 58,898.5 |  | 0.0112471278804954 | Cons. | Z2 | SL | Cons |  | Pls&Lmn | SUB.C | Serv. Rd | Serv.Rd | allElec |
| B2.33 71 16.65 |  | Lighting Poles Installation Incl power box, Cables | 3d | 2026-11-12 | 2026-11-16 | B2.33 71 16.64 |  |  |  | 79d | 0d | Labor [77.96 h]; Operator [77.96 h]; Mobile Crane [40 h]; Electrician [38.98 h]; Lighting poles with 1 arm, height of ( 10) meters [13.2] | 117,797 |  | 0.0224942557609906 | Cons. | Z2 | SL | Cons |  | Pls&Lmn | SUB.C | Serv. Rd | Serv.Rd | allElec |
| B2.26.56.19.9 |  | Lighting Luminares Inst | 3d | 2026-11-16 | 2026-11-19 | B2.33 71 16.65 |  |  |  | 79d | 0d | Labor [46.78 h]; Operator [46.78 h]; Manlift [24 h]; Street Lighting( LED), Lamp Lumen: 14560, Luminare Lumen:12700 , complete with control gear and lamp, (80) WATT. [30.11] | 27,918.13 |  | 0.0047113256383061 | Cons. | Z2 | SL | Cons |  | Pls&Lmn | SUB.C | Serv. Rd | Serv.Rd | allElec |
| B2.33 71 16.66 |  | Backfilling, Grouting & Chamfering | 3d | 2026-11-19 | 2026-11-23 | B2.26.56.19.9 |  |  |  | 79d | 0d | Labor [77.96 h]; Foreman [38.98 h]; Mason [38.98 h]; Operator [77.96 h]; Surveyor [38.98 h]; Surveyor Helper [38.98 h]; Loader [40 h]; Water Tanker [40 h]; Dump Truck [40 h]; Plate Compactor [40 h]; Lighting poles with 1 arm, height of ( 10) meters [6.6] | 58,898.5 |  | 0.0112471278804954 | Cons. | Z2 | SL | Cons |  | Pls&Lmn | SUB.C | Serv. Rd | Serv.Rd | allElec |
|  | Earthing | **Earthing** |  | 2026-11-09 | 2026-12-13 |  |  |  |  |  |  |  |  |  |  |  |  |  |  |  |  |  |  |  |  |
| B2.33 71 19 32 |  | Land Adjustment | 2d | 2026-11-09 | 2026-11-11 | B2.33 71 16.63 |  |  |  | 0d |  | Labor [31.18 h]; Foreman [15.59 h]; Operator [31.18 h]; Surveyor [7.8 h]; Surveyor Helper [7.8 h]; Excavator (With Bucket) [16 h]; Water Tanker [16 h]; Dump Truck [16 h]; Roller Compactor [16 h]; SL Earthing Including lighting poles circuits [0.45] | 904.39 |  | 0.000454679838542865 | Cons. | Z2 | SL | Cons |  | Cables | SUB.C | Serv. Rd | Serv.Rd | allElec |
| B2.33 71 19 33 |  | Earth Rods & Conduits | 2d | 2026-11-11 | 2026-11-14 | B2.33 71 19 32, DMM2-Proc-Delv-7240 |  |  |  | 86d | 22.68d | Labor [31.18 h]; Foreman [15.59 h]; Electrician [15.59 h]; SL Earthing Including lighting poles circuits [1.33] | 2,672.96 |  | 0.00134383152280447 | Cons. | Z2 | SL | Cons |  | Cables | SUB.C | Serv. Rd | Serv.Rd | allElec |
| B2.33 71 19 34 |  | Backfilling | 3d | 2026-12-10 | 2026-12-13 | B2.33 71 19 33, B2.33 71 19 92 |  |  |  | 63.32d | 0d | Labor [77.96 h]; Foreman [38.98 h]; Operator [77.96 h]; Surveyor [38.98 h]; Surveyor Helper [38.98 h]; Loader [40 h]; Water Tanker [40 h]; Dump Truck [40 h]; Plate Compactor [40 h]; SL Earthing Including lighting poles circuits [0.45] | 904.39 |  | 0.000454679838542865 | Cons. | Z2 | SL | Cons |  | Cables | SUB.C | Serv. Rd | Serv.Rd | allElec |
|  | LV Network | **Low Voltage Network** |  | 2026-11-11 | 2026-11-22 |  |  |  |  |  |  |  |  |  |  |  |  |  |  |  |  |  |  |  |  |
|  | MV Replacing | **Cable Replacement** |  | 2026-11-11 | 2026-11-22 |  |  |  |  |  |  |  |  |  |  |  |  |  |  |  |  |  |  |  |  |
| B2.33 71 49.23.101 |  | Excavation | 2d | 2026-11-11 | 2026-11-14 | B2.33 71 19 32 |  |  |  | 0d |  | Labor [31.18 h]; Foreman [15.59 h]; Operator [31.18 h]; Surveyor [15.59 h]; Surveyor Helper [15.59 h]; Excavator (With Bucket) [16 h]; Water Tanker [16 h]; Dump Truck [16 h]; Plate Compactor [16 h]; Dismantling and relocating the existing LV power cables [180] | 58,791.03 |  | 0.0295571690586189 | Cons. | Z2 | LV | Cons |  | Cables | SUB.C | Serv. Rd | Serv.Rd | allElec |
| B2.33 71 49.23.98 |  | Old Cable Grubbing | 2d | 2026-11-14 | 2026-11-16 | B2.33 71 49.23.101 |  |  |  | 0d |  | Labor [93.55 h]; Operator [93.55 h]; JCB [48 h]; Dismantling and relocating the existing LV power cables [270] | 88,186.55 |  | 0.0443357535879282 | Cons. | Z2 | LV | Cons |  | Cables | SUB.C | Serv. Rd | Serv.Rd | allElec |
| B2.33 71 49.23.99 |  | New Cable Installation | 2d | 2026-11-16 | 2026-11-18 | B2.33 71 49.23.98 |  |  |  | 0d |  | Foreman [46.78 h]; Operator [93.55 h]; Boom Truck [48 h]; Electrician [46.78 h]; Dismantling and relocating the existing LV power cables [270] | 88,186.55 |  | 0.0443357535879282 | Cons. | Z2 | LV | Cons |  | Cables | SUB.C | Serv. Rd | Serv.Rd | allElec |
| B2.33 71 49.23.100 |  | Backfilling & Warrning Tape | 3d | 2026-11-18 | 2026-11-22 | B2.33 71 49.23.99 |  |  |  | 0d |  | Labor [77.96 h]; Foreman [38.98 h]; Operator [155.92 h]; Surveyor [38.98 h]; Surveyor Helper [38.98 h]; Loader [40 h]; Water Tanker [40 h]; Dump Truck [40 h]; Plate Compactor [40 h]; Roller Compactor [40 h]; Dismantling and relocating the existing LV power cables [180] | 58,791.03 |  | 0.0295571690586189 | Cons. | Z2 | LV | Cons |  | Cables | SUB.C | Serv. Rd | Serv.Rd | allElec |
|  | Earth & Road Works | **Earth & Road Works** |  | 2026-02-13 | 2026-12-16 |  |  |  |  |  |  |  |  |  |  |  |  |  |  |  |  |  |  |  |  |
|  | Earth Works | **Earth Works** |  | 2026-02-13 | 2026-10-27 |  |  |  |  |  |  |  |  |  |  |  |  |  |  |  |  |  |  |  |  |
| B1.2.31 23 23.01.9 |  | Embankment Backfiling | 16.63d | 2026-02-13 A | 2026-03-10 A | B1.2.31 23 23.01.10 | 100% | 2026-02-14 | 2026-03-10 |  |  | Embankment backfiling [14368.2]; Labor [56.7 h]; Foreman [28.35 h]; Operator [56.7 h]; Surveyor [28.35 h]; Surveyor Helper [28.35 h]; Loader [32 h]; Water Tanker [32 h]; Dump Truck [32 h]; Plate Compactor [32 h]; Roller Compactor [32 h] | 391,074.83 | 391,074.83 | 0.051902936221917 | Cons. | Z2 | Roads | Cons |  |  |  | Serv. Rd | Serv.Rd |  |
| B1.2.31 23 16.01.9 |  | Roadway Excavation | 2d | 2026-10-25 | 2026-10-27 | B2.31 23 00.221 |  |  |  | 0d |  | Roadway Excavation for cuttings (all types of soil) [18320.3]; Labor [31.18 h]; Foreman [15.59 h]; Operator [31.18 h]; Surveyor [15.59 h]; Surveyor Helper [15.59 h]; Excavator (With Bucket) [16 h]; Water Tanker [16 h]; Dump Truck [16 h] | 273,448.67 |  | 3.3393068089673E-005 | Cons. | Z2 | Roads | Cons |  |  |  | Serv. Rd | Serv.Rd |  |

| ID | WBS | Activity | Duration | Start | Finish | Predecessors | Total float | Free float | Resources | Cost | Weight % | DMM2 Weekly Progress | DMM2 Zones | Networks & Stations | DMM2 Phases | Networks Components | Dmm2 Roads | Yellow Sheet |
| --- | --- | --- | --- | --- | --- | --- | --- | --- | --- | --- | --- | --- | --- | --- | --- | --- | --- | --- |
|  | Earth Layers | **Earth Layers** |  | 2026-10-27 | 2026-11-01 |  |  |  |  |  |  |  |  |  |  |  |  |  |
| B1.2.32 11 13.01.9 |  | Subgrade | 2d | 2026-10-27 | 2026-10-29 | B1.2.31 23 23.01.9, B1.1.31 23 23.112, B1.2.31 23 16.01.9 | 0d |  | Subgrade [1622.96]; Labor [31.18 h]; Foreman [15.59 h]; Operator [31.18 h]; Surveyor [15.59 h]; Surveyor Helper [15.59 h]; Grader [16 h]; Loader [16 h]; Water Tanker [16 h]; Dump Truck [16 h]; Plate Compactor [16 h]; Roller Compactor [16 h] | 48,448.61 | 0.0284103720870791 | Cons. | Z2 | Roads | Cons | Roads | Serv. Rd | Serv.Rd |
| B1.2.32 11 23.01.9 |  | Aggregate Base Course | 2d | 2026-10-29 | 2026-11-01 | B1.2.32 11 13.01.9 | 0d |  | Aggregate base course [1081.98]; Labor [31.18 h]; Foreman [15.59 h]; Operator [31.18 h]; Surveyor [15.59 h]; Surveyor Helper [15.59 h]; Grader [16 h]; Loader [16 h]; Water Tanker [16 h]; Dump Truck [16 h]; Plate Compactor [16 h]; Roller Compactor [16 h] | 94,047.54 | 0.0535470625791086 | Cons. | Z2 | Roads | Cons | Roads | Serv. Rd | Serv.Rd |
|  | Interlock | **Interlock** |  | 2026-11-22 | 2026-11-25 |  |  |  |  |  |  |  |  |  |  |  |  |  |
| B1.2.32 14 13.13.9 |  | 60mm thick - Interlocking Block Pavers | 3d | 2026-11-22 | 2026-11-25 | B2.33 71 49.23.100 | 0d |  | 60mm thick - Interlocking block pavers for sidewalks and medians [386.27]; Labor [46.78 h]; Foreman [23.39 h]; Mason [23.39 h]; Operator [46.78 h]; JCB [24 h] | 25,774.77 | 0.0143094709315776 | Cons. | Z2 | Roads | Cons | Roads | Serv. Rd | Serv.Rd |
|  | Curbstone | **Curbstone** |  | 2026-11-22 | 2026-12-07 |  |  |  |  |  |  |  |  |  |  |  |  |  |
|  | Pre Install | **Pre-Installation** |  | 2026-11-22 | 2026-11-29 |  |  |  |  |  |  |  |  |  |  |  |  |  |
| B2.31 23 00.241 |  | Excavation | 2d | 2026-11-22 | 2026-11-24 | B1.2.32 14 13.13.9 SS | 13d | 0d | Curb Stone, Type K1 [62.39]; Dropped Curb, Type K3 [2.46]; Edge Curb, Type K4 [45.78]; Heel Curb, Type K5 [24.68]; Transition Curb [0.32]; Labor [31.18 h]; Foreman [15.59 h]; Operator [31.18 h]; Surveyor [15.59 h]; Surveyor Helper [15.59 h]; JCB [16 h]; Water Tanker [16 h]; Dump Truck [16 h]; Plate Compactor [16 h] | 9,974.49 | 0.00564683181918345 | Cons. | Z2 | Roads | Cons | Roads | Serv. Rd | Serv.Rd |
| B1.2.32 14 13.13.29 |  | PCC | 2d | 2026-11-24 | 2026-11-26 | B2.31 23 00.241 | 13d | 0d | Curb Stone, Type K1 [62.39]; Dropped Curb, Type K3 [2.46]; Edge Curb, Type K4 [45.78]; Heel Curb, Type K5 [24.68]; Transition Curb [0.32]; Labor [31.18 h]; Mason [15.59 h]; Surveyor [15.59 h]; Surveyor Helper [15.59 h] | 9,974.49 | 0.00564683181918345 | Cons. | Z2 | Roads | Cons | Roads | Serv. Rd | Serv.Rd |
| 32 16 13.009 |  | Haunching | 2d | 2026-11-26 | 2026-11-29 | B1.2.32 14 13.13.29 | 13d | 0d | Curb Stone, Type K1 [62.39]; Dropped Curb, Type K3 [2.46]; Edge Curb, Type K4 [45.78]; Heel Curb, Type K5 [24.68]; Transition Curb [0.32]; Labor [46.78 h]; Carpenter [23.39 h]; Mason [23.39 h]; Surveyor [23.39 h]; Surveyor Helper [23.39 h] | 9,974.49 | 0.00564683181918345 | Cons. | Z2 | Roads | Cons | Roads | Serv. Rd | Serv.Rd |
|  | Installation | **Installation** |  | 2026-11-29 | 2026-12-07 |  |  |  |  |  |  |  |  |  |  |  |  |  |
| B1.2.32 16.13.01.9 |  | Curb Stone, Type K1 | 2d | 2026-11-29 | 2026-12-01 | 32 16 13.009 | 13d | 0d | Curb Stone, Type K1 [187.16]; Labor [31.18 h]; Foreman [15.59 h]; Mason [15.59 h]; Operator [31.18 h]; Surveyor [15.59 h]; Surveyor Helper [15.59 h]; JCB [16 h] | 14,131.83 | 0.00833514870600939 | Cons. | Z2 | Roads | Cons | Roads | Serv. Rd | Serv.Rd |
| B1.2.32 16.13.02.8 |  | Dropped Curb, Type K3 | 1d | 2026-12-01 | 2026-12-02 | 32 16 13.009, B1.2.32 16.13.01.9 | 13d | 0d | Dropped Curb, Type K3 [24.46]; Labor [31.18 h]; Foreman [15.59 h]; Mason [15.59 h]; Operator [31.18 h]; Surveyor [15.59 h]; Surveyor Helper [15.59 h]; JCB [16 h] | 1,975.59 | 0.00115454822435724 | Cons. | Z2 | Roads | Cons | Roads | Serv. Rd | Serv.Rd |
| B1.2.32 16.13.03.9 |  | Edge Curb, Type K4 | 2d | 2026-12-02 | 2026-12-05 | 32 16 13.009, B1.2.32 16.13.02.8 | 13d | 0d | Edge Curb, Type K4 [137.34]; Labor [31.18 h]; Foreman [15.59 h]; Mason [15.59 h]; Operator [31.18 h]; Surveyor [15.59 h]; Surveyor Helper [15.59 h]; JCB [16 h] | 10,370.12 | 0.00571092631824705 | Cons. | Z2 | Roads | Cons | Roads | Serv. Rd | Serv.Rd |
| B1.2.32 16.13.049 |  | Heel Curb, Type K5 | 2d | 2026-12-05 | 2026-12-07 | 32 16 13.009, B1.2.32 16.13.03.9 | 13d | 0d | Heel Curb, Type K5 [74.06]; Labor [31.18 h]; Foreman [15.59 h]; Mason [15.59 h]; Operator [31.18 h]; Surveyor [15.59 h]; Surveyor Helper [15.59 h]; JCB [16 h] | 4,746.99 | 0.00249839960638861 | Cons. | Z2 | Roads | Cons | Roads | Serv. Rd | Serv.Rd |
|  | Finishing | **Finishing** |  | 2026-12-05 | 2026-12-07 |  |  |  |  |  |  |  |  |  |  |  |  |  |
| 32 16 13.09 |  | Finishing, Fareface | 2d | 2026-12-05 | 2026-12-07 | B1.2.32 16.13.01.9 SS, B1.2.32 16.13.02.8 SS, B1.2.32 16.13.03.9 SS, B1.2.32 16.13.049 SS | 13d | 0d | Curb Stone, Type K1 [41.59]; Dropped Curb, Type K3 [0.49]; Edge Curb, Type K4 [30.52]; Heel Curb, Type K5 [16.46]; Transition Curb [0.19]; Labor [93.55 h]; Mason [46.78 h] | 6,554.53 | 0.00370890823700891 | Cons. | Z2 | Roads | Cons | Roads | Serv. Rd | Serv.Rd |
|  | Asphalt Layers | **Asphalt Layers** |  | 2026-11-01 | 2026-12-13 |  |  |  |  |  |  |  |  |  |  |  |  |  |
| B1.2.32 11 26.01.9 |  | Bituminous Base Course including Prime Coat (MC1) and tack coat (RC2) | 5d | 2026-11-01 | 2026-11-07 | B1.2.32 11 23.01.9 | 0d |  | Bituminous base course(Grading I - Class A) [741.34]; Labor [31.18 h]; Foreman [15.59 h]; Operator [31.18 h]; Surveyor [15.59 h]; Surveyor Helper [15.59 h]; Dump Truck [16 h]; Roller Compactor [16 h]; MC1/RC2 Sprayer [16 h] | 407,459.26 | 0.22476957883684 | Cons. | Z2 | Roads | Cons | Roads | Serv. Rd | Serv.Rd |
| B1.2.32 12 16.01.9 |  | Bituminous concrete Wearing Course, including tack coat (RC2) | 5d | 2026-12-07 | 2026-12-13 | B1.2.32 11 26.01.9, 32 16 13.09 | 13d | 0d | Bituminous concrete wearing course, after compaction(Grading I - Class A), including tack coat (RC2) [271.26]; Labor [31.18 h]; Foreman [15.59 h]; Operator [31.18 h]; Surveyor [15.59 h]; Surveyor Helper [15.59 h]; Dump Truck [16 h]; Roller Compactor [16 h]; MC1/RC2 Sprayer [16 h] | 160,045.8 | 0.0882412742392265 | Cons. | Z2 | Roads | Cons | Roads | Serv. Rd | Serv.Rd |
|  | Pavement Marking | **Pavement Marking** |  | 2026-12-15 | 2026-12-16 |  |  |  |  |  |  |  |  |  |  |  |  |  |
| B1.2.32 17 23.01.9 |  | Retroreflective Thermoplastic White Traffic lines | 1d | 2026-12-15 | 2026-12-16 | B1.2.32 12 16.01.9, B1.2.32 12 19.13.09 | 26d | 0d | Retroreflective Thermoplastic White Traffic lines [91.95]; Labor [46.78 h]; Mason [23.39 h]; Road Marking Machine [24 h] | 2,744.92 | 0.00138000659954938 | Cons. | Z2 | Roads | Cons | Roads | Serv. Rd | Serv.Rd |
| B1.2.32 17 23.02.9 |  | Retroreflective Thermoplastic Yellow, Traffic lines | 1d | 2026-12-15 | 2026-12-16 | B1.2.32 12 16.01.9, B1.2.32 12 19.13.09 | 26d | 0d | Retroreflective Thermoplastic Yellow, Traffic lines [44.07]; Labor [31.18 h]; Mason [15.59 h]; Road Marking Machine [16 h] | 1,315.61 | 0.000661420485959036 | Cons. | Z2 | Roads | Cons | Roads | Serv. Rd | Serv.Rd |
|  | Traffic Signs | **Traffic Signs** |  | 2026-11-22 | 2026-11-29 |  |  |  |  |  |  |  |  |  |  |  |  |  |
|  | Pre Install | **Pre-Installation** |  | 2026-11-22 | 2026-11-26 |  |  |  |  |  |  |  |  |  |  |  |  |  |
| B2.31 23 00.251 |  | Excavation | 2d | 2026-11-22 | 2026-11-24 | B1.2.32 14 13.13.9 SS | 0d |  | Traffic signs, ground mounted, 1 Sheet Alumenium, (breakaway) Single post [6.09]; Labor [46.78 h]; Foreman [23.39 h]; Operator [46.78 h]; Surveyor [23.39 h]; Surveyor Helper [23.39 h]; JCB [24 h]; Water Tanker [24 h]; Dump Truck [24 h]; Plate Compactor [24 h] | 6,796.08 | 0.00341672663992894 | Cons. | Z2 | Roads | Cons | Roads | Serv. Rd | Serv.Rd |
| 10 14 53.09 |  | Foundation | 2d | 2026-11-24 | 2026-11-26 | B2.31 23 00.251 | 54d | 0d | Traffic signs, ground mounted, 1 Sheet Alumenium, (breakaway) Single post [6.09]; Labor [62.37 h]; Carpenter [31.18 h]; Steelfixer [31.18 h]; Mason [31.18 h]; Surveyor [31.18 h]; Surveyor Helper [31.18 h] | 6,796.08 | 0.00341672663992894 | Cons. | Z2 | Roads | Cons | Roads | Serv. Rd | Serv.Rd |

| ID | WBS | Activity | Duration | Start | Finish | Predecessors | Complete | Remaining | Planned start | Planned finish | Total float | Free float | Resources | Cost | Actual cost | Weight % | DMM2 Weekly Progress | DMM2 Zones | Networks & Stations | DMM2 Phases | Networks Components | Dmm2 Roads | Yellow Sheet | UNASCO | Subcontractors works |
| --- | --- | --- | --- | --- | --- | --- | --- | --- | --- | --- | --- | --- | --- | --- | --- | --- | --- | --- | --- | --- | --- | --- | --- | --- | --- |
|  | Installation | **Installation** |  | 2026-11-26 | 2026-11-29 |  |  |  |  |  |  |  |  |  |  |  |  |  |  |  |  |  |  |  |  |
| B1.2.10 14 53.019 |  | 1 Sheet Alumenium, Single post | 2d | 2026-11-26 | 2026-11-29 | B1.2.32 14 13.13.9, 10 14 53.09, 32 16 13.016 |  |  |  |  | 54d | 0d | Traffic signs, ground mounted, 1 Sheet Alumenium, (breakaway) Single post [18.27]; Labor [62.37 h]; Foreman [31.18 h]; Operator [62.37 h]; JCB [32 h] | 20,388.24 |  | 0.0102501799197868 | Cons. | Z2 | Roads | Cons | Roads | Serv. Rd | Serv.Rd |  |  |
|  | Road Misc. | **Miscellaneous** |  | 2026-12-13 | 2026-12-15 |  |  |  |  |  |  |  |  |  |  |  |  |  |  |  |  |  |  |  |  |
| B1.2.32 12 19.13.09 |  | Speed Tables | 2d | 2026-12-13 | 2026-12-15 | B1.2.32 12 16.01.9 |  |  |  |  | 26d | 0d | Asphalt speed table [1]; Labor [31.18 h]; Foreman [15.59 h]; Operator [31.18 h]; JCB [16 h]; Roller Compactor [16 h] | 12,204.23 |  | 0.00613567278845278 | Cons. | Z2 | Roads | Cons | Roads | Serv. Rd | Serv.Rd |  |  |
|  | Enterance RD 01 | **Entrance Road 01** |  | 2025-12-03 | 2027-01-18 |  |  |  |  |  |  |  |  |  |  |  |  |  |  |  |  |  |  |  |  |
|  | Wet Networks | **Wet Networks** |  | 2026-02-18 | 2026-10-22 |  |  |  |  |  |  |  |  |  |  |  |  |  |  |  |  |  |  |  |  |
|  | Sewerage Network | **Sewerage Network** |  | 2026-03-11 | 2026-10-21 |  |  |  |  |  |  |  |  |  |  |  |  |  |  |  |  |  |  |  |  |
|  | GRP | **GRP Pipes** |  | 2026-03-11 | 2026-10-21 |  |  |  |  |  |  |  |  |  |  |  |  |  |  |  |  |  |  |  |  |
|  | 150 | **?150** |  | 2026-03-11 | 2026-10-12 |  |  |  |  |  |  |  |  |  |  |  |  |  |  |  |  |  |  |  |  |
|  | 1 | **Depth From 0.0m - 1.5m** |  | 2026-03-11 | 2026-10-12 |  |  |  |  |  |  |  |  |  |  |  |  |  |  |  |  |  |  |  |  |
| B5.33 31 00.01.2119 |  | Excavation | 36.36d | 2026-03-11 A | 2026-04-29 A | B5.33 31 00.01.025 | 100% |  |  |  |  |  | Labor [28.35 h]; Foreman [14.17 h]; Operator [28.35 h]; Surveyor [14.17 h]; Surveyor Helper [14.17 h]; Excavator (With Bucket) [16 h]; Water Tanker [16 h]; Dump Truck [16 h]; Plate Compactor [16 h]; Sew Dia. 150mm Depth: 0.0m - 1.5m [125.06] | 28,327.82 | 28,327.82 | 0.00588798603163545 | Cons. | Z2 | Sew | Cons | GRPs | Ent Rd 01 | Sew | CS.UNSC | SUB.C |
| B5.33 31 00.01.2129 |  | Sand Bedding | 35.36d | 2026-03-14 A | 2026-04-30 A | B5.33 31 00.01.2119 | 100% |  |  |  |  |  | Labor [28.35 h]; Foreman [14.17 h]; Operator [56.7 h]; Surveyor [14.17 h]; Surveyor Helper [14.17 h]; Loader [16 h]; Water Tanker [16 h]; Dump Truck [16 h]; Plate Compactor [16 h]; Sew Dia. 150mm Depth: 0.0m - 1.5m [31.26] | 7,081.96 | 7,081.96 | 0.00147199650790885 | Cons. | Z2 | Sew | Cons | GRPs | Ent Rd 01 | Sew | CS.UNSC | SUB.C |
| B5.33 31 00.01.2139 |  | Pipe Laying | 14.36d | 2026-03-17 A | 2026-04-08 A | B5.33 31 00.01.2129 | 100% |  |  |  |  |  | Labor [28.35 h]; Foreman [14.17 h]; Plumber Helper [14.17 h]; Plumber [14.17 h]; Operator [14.17 h]; Surveyor [14.17 h]; Surveyor Helper [14.17 h]; Mobile Crane [16 h]; Sew Dia. 150mm Depth: 0.0m - 1.5m [281.38] | 63,737.6 | 63,737.6 | 0.0132479685711797 | Cons. | Z2 | Sew | Cons | GRPs | Ent Rd 01 | Sew | CS.UNSC | SUB.C |
| B5.33 31 00.01.2149 |  | Embedment & Test | 4.62d | 2026-05-06 A | 2026-05-11 A | B5.33 31 00.01.2139 | 100% |  |  |  |  |  | Labor [56.7 h]; Foreman [28.35 h]; Plumber Helper [28.35 h]; Plumber [28.35 h]; Operator [56.7 h]; Surveyor [28.35 h]; Surveyor Helper [28.35 h]; Loader [32 h]; Water Tanker [32 h]; Dump Truck [32 h]; Plate Compactor [32 h]; Roller Compactor [32 h]; Sew Dia. 150mm Depth: 0.0m - 1.5m [125.06] | 28,327.82 | 28,327.82 | 0.00588798603163545 | Cons. | Z2 | Sew | Cons | GRPs | Ent Rd 01 | Sew | CS.UNSC | SUB.C |
| B5.33 31 00.01.2159 |  | Backfilling & Warrning Tape (7.30% Completed) | 105.89d | 2026-05-11 A | 2026-09-15 A | B5.33 31 00.01.2149 | 100% |  |  |  |  |  | Labor [5.69 h]; Foreman [2.85 h]; Operator [11.38 h]; Surveyor [2.85 h]; Surveyor Helper [2.85 h]; Loader [2.92 h]; Water Tanker [2.92 h]; Dump Truck [2.92 h]; Plate Compactor [2.92 h]; Roller Compactor [2.92 h]; Sew Dia. 150mm Depth: 0.0m - 1.5m [4.56] | 1,033.83 | 1,033.83 | 0.00294399301581772 | Cons. | Z2 | Sew | Cons | GRPs | Ent Rd 01 | Sew | CS.UNSC | SUB.C |
| B5.33 31 00.01.2159_R |  | Backfilling & Warrning Tape(Rem) | 4.67d | 2026-10-07 A | 2026-10-12 A | B5.33 31 00.01.2149, B5.33 31 00.01.2159 | 100% |  |  |  |  |  | Labor [72.27 h]; Foreman [36.14 h]; Operator [144.54 h]; Surveyor [36.14 h]; Surveyor Helper [36.14 h]; Loader [37.08 h]; Water Tanker [37.08 h]; Dump Truck [37.08 h]; Plate Compactor [37.08 h]; Roller Compactor [37.08 h]; Sew Dia. 150mm Depth: 0.0m - 1.5m [57.96] | 13,130.08 | 13,130.08 | 0.00294399301581772 | Cons. | Z2 | Sew | Cons | GRPs | Ent Rd 01 | Sew | CS.UNSC | SUB.C |
|  | 1 | **?200** |  | 2026-03-14 | 2026-10-21 |  |  |  |  |  |  |  |  |  |  |  |  |  |  |  |  |  |  |  |  |
|  | 1 | **Depth From 0.0m - 1.5m** |  | 2026-03-14 | 2026-10-21 |  |  |  |  |  |  |  |  |  |  |  |  |  |  |  |  |  |  |  |  |
| B5.33 31 00.01.2169 |  | Excavation | 44.36d | 2026-03-14 A | 2026-05-11 A | B5.33 31 00.01.2119 | 100% |  |  |  |  |  | Labor [28.35 h]; Foreman [14.17 h]; Operator [28.35 h]; Surveyor [14.17 h]; Surveyor Helper [14.17 h]; Excavator (With Bucket) [16 h]; Water Tanker [16 h]; Dump Truck [16 h]; Plate Compactor [16 h]; Sew Dia. 200mm Depth: 0.0m - 1.5m [33.01] | 9,187.33 | 9,187.33 | 0.000797944321329122 | Cons. | Z2 | Sew | Cons | GRPs | Ent Rd 01 | Sew | CS.UNSC | SUB.C |
| B5.33 31 00.01.2179 |  | Sand Bedding | 45.36d | 2026-03-17 A | 2026-05-14 A | B5.33 31 00.01.2169 | 100% |  |  |  |  |  | Labor [28.35 h]; Foreman [14.17 h]; Operator [56.7 h]; Surveyor [14.17 h]; Surveyor Helper [14.17 h]; Loader [16 h]; Water Tanker [16 h]; Dump Truck [16 h]; Plate Compactor [16 h]; Sew Dia. 200mm Depth: 0.0m - 1.5m [8.24] | 2,294.55 | 2,294.55 | 0.000199287586720009 | Cons. | Z2 | Sew | Cons | GRPs | Ent Rd 01 | Sew | CS.UNSC | SUB.C |
| B5.33 31 00.01.2189 |  | Pipe Laying | 47.11d | 2026-03-19 A | 2026-05-18 A | B5.33 31 00.01.2179 | 100% |  | 2026-03-24 | 2026-05-18 |  |  | Labor [28.35 h]; Foreman [14.17 h]; Plumber Helper [14.17 h]; Plumber [14.17 h]; Operator [14.17 h]; Surveyor [14.17 h]; Surveyor Helper [14.17 h]; Mobile Crane [16 h]; Sew Dia. 200mm Depth: 0.0m - 1.5m [74.26] | 20,669.21 | 20,669.21 | 0.00179517622937826 | Cons. | Z2 | Sew | Cons | GRPs | Ent Rd 01 | Sew | CS.UNSC | SUB.C |
| B5.33 31 00.01.2199 |  | Embedment & Test (10.51% Completed) | 139.44d | 2026-04-01 A | 2026-09-15 A | B5.33 31 00.01.2189 | 100% |  |  |  |  |  | Labor [6.55 h]; Foreman [3.28 h]; Plumber Helper [3.28 h]; Plumber [3.28 h]; Operator [6.55 h]; Surveyor [3.28 h]; Surveyor Helper [3.28 h]; Loader [3.36 h]; Water Tanker [3.36 h]; Dump Truck [3.36 h]; Plate Compactor [3.36 h]; Roller Compactor [3.36 h]; Sew Dia. 200mm Depth: 0.0m - 1.5m [3.47] | 965.24 | 965.24 | 0.000797944321329122 | Cons. | Z2 | Sew | Cons | GRPs | Ent Rd 01 | Sew | CS.UNSC | SUB.C |
| B5.33 31 00.01.2209 |  | Backfilling & Warrning Tape (10.47% Completed) | 132d | 2026-04-10 A | 2026-09-15 A | B5.33 31 00.01.2199 FF, B5.33 31 00.01.2159 SS | 100% |  | 2026-04-11 | 2026-09-15 |  |  | Labor [8.16 h]; Foreman [4.08 h]; Operator [16.33 h]; Surveyor [4.08 h]; Surveyor Helper [4.08 h]; Loader [4.19 h]; Water Tanker [4.19 h]; Dump Truck [4.19 h]; Plate Compactor [4.19 h]; Roller Compactor [4.19 h]; Sew Dia. 200mm Depth: 0.0m - 1.5m [1.73] | 481.45 | 481.45 | 0.000399369147889103 | Cons. | Z2 | Sew | Cons | GRPs | Ent Rd 01 | Sew | CS.UNSC | SUB.C |
| B5.33 31 00.01.2199_R |  | Embedment & Test(Rem) | 3.58d | 2026-10-07 A | 2026-10-21 | B5.33 31 00.01.2189, B5.33 31 00.01.2199 | 90% | 0.36d | 2026-10-07 | 2026-10-11 | 112.96d |  | Labor [55.82 h]; Foreman [27.91 h]; Plumber Helper [27.91 h]; Plumber [27.91 h]; Operator [55.82 h]; Surveyor [27.91 h]; Surveyor Helper [27.91 h]; Loader [28.64 h]; Water Tanker [28.64 h]; Dump Truck [28.64 h]; Plate Compactor [28.64 h]; Roller Compactor [28.64 h]; Sew Dia. 200mm Depth: 0.0m - 1.5m [29.54] | 8,222.09 | 7,399.88 | 0.000797944321329122 | Cons. | Z2 | Sew | Cons | GRPs | Ent Rd 01 | Sew | CS.UNSC | SUB.C |
| B5.33 31 00.01.2209_R |  | Backfilling & Warrning Tape(Rem) | 4.56d | 2026-10-07 A | 2026-10-12 A | B5.33 31 00.01.2199_R FF, B5.33 31 00.01.2159_R SS, B5.33 31 00.01.2209 | 100% |  |  |  |  |  | Labor [69.8 h]; Foreman [34.9 h]; Operator [139.6 h]; Surveyor [34.9 h]; Surveyor Helper [34.9 h]; Loader [35.81 h]; Water Tanker [35.81 h]; Dump Truck [35.81 h]; Plate Compactor [35.81 h]; Roller Compactor [35.81 h]; Sew Dia. 200mm Depth: 0.0m - 1.5m [14.79] | 4,116.78 | 4,116.78 | 0.000399369147889103 | Cons. | Z2 | Sew | Cons | GRPs | Ent Rd 01 | Sew | CS.UNSC | SUB.C |

| ID | WBS | Activity | Duration | Start | Finish | Predecessors | Complete | Planned start | Planned finish | Resources | Cost | Actual cost | Weight % | DMM2 Weekly Progress | DMM2 Zones | Networks & Stations | DMM2 Phases | UNASCO | Networks Components | Subcontractors works | Dmm2 Roads | Yellow Sheet |
| --- | --- | --- | --- | --- | --- | --- | --- | --- | --- | --- | --- | --- | --- | --- | --- | --- | --- | --- | --- | --- | --- | --- |
|  | Stormwater Network | **Stormwater Network** |  | 2026-02-18 | 2026-10-22 |  |  |  |  |  |  |  |  |  |  |  |  |  |  |  |  |  |
|  | GRP | **GRP** |  | 2026-02-18 | 2026-06-24 |  |  |  |  |  |  |  |  |  |  |  |  |  |  |  |  |  |
|  | ?400 | **?400** |  | 2026-02-18 | 2026-05-20 |  |  |  |  |  |  |  |  |  |  |  |  |  |  |  |  |  |
|  | 3 | **Depth From 1.5m to 2.5m** |  | 2026-02-18 | 2026-05-20 |  |  |  |  |  |  |  |  |  |  |  |  |  |  |  |  |  |
| B6.33 42 11.02.02 |  | Excavation | 14.5d | 2026-02-18 A | 2026-03-13 A | B1.1.31 23 23.52 | 100% | 2026-02-18 | 2026-03-14 | Labor [28.35 h]; Foreman [14.17 h]; Operator [28.35 h]; Surveyor [14.17 h]; Surveyor Helper [14.17 h]; Excavator (With Bucket) [16 h]; Water Tanker [16 h]; Dump Truck [16 h]; Plate Compactor [16 h]; Depth: 1.51m - 2.5m [3.99] | 1,531.45 | 1,531.45 | 0.00310601117599926 | Cons. | Z2 | Storm | Cons | CS.UNSC | GRPs | SUB.C | Ent Rd 01 | Strm |
| B6.33 42 11.02.03 |  | Sand Bedding | 17d | 2026-02-21 A | 2026-03-20 A | B6.33 42 11.02.02 | 100% | 2026-02-21 | 2026-03-24 | Labor [28.35 h]; Foreman [14.17 h]; Operator [56.7 h]; Surveyor [14.17 h]; Surveyor Helper [14.17 h]; Loader [16 h]; Water Tanker [16 h]; Dump Truck [16 h]; Plate Compactor [16 h]; Depth: 1.51m - 2.5m [1] | 383 | 383 | 0.000776776306783888 | Cons. | Z2 | Storm | Cons | CS.UNSC | GRPs | SUB.C | Ent Rd 01 | Strm |
| B6.33 42 11.02.04 |  | Pipe Laying | 19.25d | 2026-02-23 A | 2026-03-27 A | B6.33 42 11.02.03 | 100% | 2026-02-23 | 2026-03-28 | Labor [28.35 h]; Foreman [14.17 h]; Plumber Helper [14.17 h]; Plumber [14.17 h]; Operator [14.17 h]; Surveyor [14.17 h]; Surveyor Helper [14.17 h]; Mobile Crane [16 h]; Depth: 1.51m - 2.5m [8.98] | 3,445.9 | 3,445.9 | 0.00698879865878235 | Cons. | Z2 | Storm | Cons | CS.UNSC | GRPs | SUB.C | Ent Rd 01 | Strm |
| B6.33 42 11.02.05 |  | Embedment & Test | 15.4d | 2026-04-02 A | 2026-04-20 A | B6.33 42 11.02.04 | 100% |  |  | Labor [56.7 h]; Foreman [28.35 h]; Plumber Helper [28.35 h]; Plumber [28.35 h]; Operator [56.7 h]; Surveyor [28.35 h]; Surveyor Helper [28.35 h]; Loader [32 h]; Water Tanker [32 h]; Dump Truck [32 h]; Plate Compactor [32 h]; Roller Compactor [32 h]; Depth: 1.51m - 2.5m [3.99] | 1,531.45 | 1,531.45 | 0.00310601117599926 | Cons. | Z2 | Storm | Cons | CS.UNSC | GRPs | SUB.C | Ent Rd 01 | Strm |
| B6.33 42 11.02.06 |  | Backfilling & Warrning Tape | 37.29d | 2026-04-07 A | 2026-05-20 A | B6.33 42 11.02.05 | 100% |  |  | Labor [70.87 h]; Foreman [35.44 h]; Operator [141.75 h]; Surveyor [35.44 h]; Surveyor Helper [35.44 h]; Loader [40 h]; Water Tanker [40 h]; Dump Truck [40 h]; Plate Compactor [40 h]; Roller Compactor [40 h]; Depth: 1.51m - 2.5m [2] | 766 | 766 | 0.00155355261356778 | Cons. | Z2 | Storm | Cons | CS.UNSC | GRPs | SUB.C | Ent Rd 01 | Strm |
|  | ?4001 | **?500** |  | 2026-03-24 | 2026-06-23 |  |  |  |  |  |  |  |  |  |  |  |  |  |  |  |  |  |
|  | 3 | **Depth From 1.5m to 2.5m** |  | 2026-03-24 | 2026-06-23 |  |  |  |  |  |  |  |  |  |  |  |  |  |  |  |  |  |
| B6.33 42 11.04.02 |  | Excavation | 6.74d | 2026-03-24 A | 2026-04-01 A | B6.33 42 11.02.02 | 100% |  |  | Labor [28.35 h]; Foreman [14.17 h]; Operator [28.35 h]; Surveyor [14.17 h]; Surveyor Helper [14.17 h]; Excavator (With Bucket) [16 h]; Water Tanker [16 h]; Dump Truck [16 h]; Plate Compactor [16 h]; 1.51m - 2.5m [12.84] | 7,427.81 | 7,427.81 | 0.00678741471010152 | Cons. | Z2 | Storm | Cons | CS.UNSC | GRPs | SUB.C | Ent Rd 01 | Strm |
| B6.33 42 11.04.03 |  | Sand Bedding | 4.74d | 2026-03-26 A | 2026-04-01 A | B6.33 42 11.04.02 | 100% |  |  | Labor [28.35 h]; Foreman [14.17 h]; Operator [56.7 h]; Surveyor [14.17 h]; Surveyor Helper [14.17 h]; Loader [16 h]; Water Tanker [16 h]; Dump Truck [16 h]; Plate Compactor [16 h]; 1.51m - 2.5m [3.21] | 1,856.05 | 1,856.05 | 0.00169602876081295 | Cons. | Z2 | Storm | Cons | CS.UNSC | GRPs | SUB.C | Ent Rd 01 | Strm |
| B6.33 42 11.04.04 |  | Pipe Laying | 2.74d | 2026-03-29 A | 2026-04-01 A | B6.33 42 11.04.03 | 100% |  |  | Labor [28.35 h]; Foreman [14.17 h]; Plumber Helper [14.17 h]; Plumber [14.17 h]; Operator [14.17 h]; Surveyor [14.17 h]; Surveyor Helper [14.17 h]; Mobile Crane [16 h]; 1.51m - 2.5m [28.88] | 16,711.67 | 16,711.67 | 0.0152708581810161 | Cons. | Z2 | Storm | Cons | CS.UNSC | GRPs | SUB.C | Ent Rd 01 | Strm |
| B6.33 42 11.04.05 |  | Embedment & Test | 2.08d | 2026-03-30 A | 2026-04-01 A | B6.33 42 11.04.04 | 100% |  |  | Labor [56.7 h]; Foreman [28.35 h]; Plumber Helper [28.35 h]; Plumber [28.35 h]; Operator [56.7 h]; Surveyor [28.35 h]; Surveyor Helper [28.35 h]; Loader [32 h]; Water Tanker [32 h]; Dump Truck [32 h]; Plate Compactor [32 h]; Roller Compactor [32 h]; 1.51m - 2.5m [12.84] | 7,427.81 | 7,427.81 | 0.00678741471010152 | Cons. | Z2 | Storm | Cons | CS.UNSC | GRPs | SUB.C | Ent Rd 01 | Strm |
| B6.33 42 11.04.06 |  | Backfilling & Warrning Tape | 63.65d | 2026-04-06 A | 2026-06-23 A | B6.33 42 11.04.05 | 100% |  |  | Labor [70.87 h]; Foreman [35.44 h]; Operator [141.75 h]; Surveyor [35.44 h]; Surveyor Helper [35.44 h]; Loader [40 h]; Water Tanker [40 h]; Dump Truck [40 h]; Plate Compactor [40 h]; Roller Compactor [40 h]; 1.51m - 2.5m [6.42] | 3,713.91 | 3,713.91 | 0.00339370735505079 | Cons. | Z2 | Storm | Cons | CS.UNSC | GRPs | SUB.C | Ent Rd 01 | Strm |
|  | ?4002 | **?600** |  | 2026-03-26 | 2026-05-05 |  |  |  |  |  |  |  |  |  |  |  |  |  |  |  |  |  |
|  | 4 | **Depth From 2.5m to 3.5m** |  | 2026-03-26 | 2026-05-05 |  |  |  |  |  |  |  |  |  |  |  |  |  |  |  |  |  |
| B6.33 42 11.08.02 |  | Excavation | 1.16d | 2026-03-26 A | 2026-03-28 A | B6.33 42 11.04.02 | 100% |  |  | Labor [28.35 h]; Foreman [14.17 h]; Operator [28.35 h]; Surveyor [14.17 h]; Surveyor Helper [14.17 h]; Excavator (With Bucket) [16 h]; Water Tanker [16 h]; Dump Truck [16 h]; Plate Compactor [16 h]; 2.51m - 3.5m |  |  | 0.03114478608159 | Cons. | Z2 | Storm | Cons | CS.UNSC | GRPs | SUB.C | Ent Rd 01 | Strm |
| B6.33 42 11.08.03 |  | Sand Bedding | 1.16d | 2026-03-29 A | 2026-03-30 A | B6.33 42 11.08.02 | 100% |  |  | Labor [28.35 h]; Foreman [14.17 h]; Operator [56.7 h]; Surveyor [14.17 h]; Surveyor Helper [14.17 h]; Loader [16 h]; Water Tanker [16 h]; Dump Truck [16 h]; Plate Compactor [16 h]; 2.51m - 3.5m |  |  | 0.00778553245246391 | Cons. | Z2 | Storm | Cons | CS.UNSC | GRPs | SUB.C | Ent Rd 01 | Strm |
| B6.33 42 11.08.04 |  | Pipe Laying | 1.16d | 2026-03-31 A | 2026-04-01 A | B6.33 42 11.08.03 | 100% |  |  | Labor [28.35 h]; Foreman [14.17 h]; Plumber Helper [14.17 h]; Plumber [14.17 h]; Operator [14.17 h]; Surveyor [14.17 h]; Surveyor Helper [14.17 h]; Mobile Crane [16 h]; 2.51m - 3.5m |  |  | 0.0700751046156437 | Cons. | Z2 | Storm | Cons | CS.UNSC | GRPs | SUB.C | Ent Rd 01 | Strm |
| B6.33 42 11.08.05 |  | Embedment & Test | 11.24d | 2026-04-01 A | 2026-04-14 A | B6.33 42 11.08.04 | 100% |  |  | Labor [56.7 h]; Foreman [28.35 h]; Plumber Helper [28.35 h]; Plumber [28.35 h]; Operator [56.7 h]; Surveyor [28.35 h]; Surveyor Helper [28.35 h]; Loader [32 h]; Water Tanker [32 h]; Dump Truck [32 h]; Plate Compactor [32 h]; Roller Compactor [32 h]; 2.51m - 3.5m |  |  | 0.03114478608159 | Cons. | Z2 | Storm | Cons | CS.UNSC | GRPs | SUB.C | Ent Rd 01 | Strm |
| B6.33 42 11.08.06 |  | Backfilling & Warrning Tape | 26.74d | 2026-04-04 A | 2026-05-05 A | B6.33 42 11.08.05 | 100% |  |  | Labor [70.87 h]; Foreman [35.44 h]; Operator [141.75 h]; Surveyor [35.44 h]; Surveyor Helper [35.44 h]; Loader [40 h]; Water Tanker [40 h]; Dump Truck [40 h]; Plate Compactor [40 h]; Roller Compactor [40 h]; 2.51m - 3.5m |  |  | 0.015573721176662 | Cons. | Z2 | Storm | Cons | CS.UNSC | GRPs | SUB.C | Ent Rd 01 | Strm |
|  | ?40021 | **?700** |  | 2026-04-06 | 2026-06-24 |  |  |  |  |  |  |  |  |  |  |  |  |  |  |  |  |  |
|  | 4 | **Depth From 2.5m to 3.5m** |  | 2026-04-06 | 2026-06-24 |  |  |  |  |  |  |  |  |  |  |  |  |  |  |  |  |  |
| B6.33 42 11.11.02 |  | Excavation | 29.16d | 2026-04-06 A | 2026-05-10 A | B6.33 42 11.08.02 | 100% |  |  | Labor [28.35 h]; Foreman [14.17 h]; Operator [28.35 h]; Surveyor [14.17 h]; Surveyor Helper [14.17 h]; Excavator (With Bucket) [16 h]; Water Tanker [16 h]; Dump Truck [16 h]; Plate Compactor [16 h]; 2.51m - 3.5m [5.94] | 6,026.78 | 6,026.78 | 0.00126183149678676 | Cons. | Z2 | Storm | Cons | CS.UNSC | GRPs | SUB.C | Ent Rd 01 | Strm |
| B6.33 42 11.11.03 |  | Sand Bedding | 28.16d | 2026-04-09 A | 2026-05-12 A | B6.33 42 11.11.02 | 100% |  |  | Labor [28.35 h]; Foreman [14.17 h]; Operator [56.7 h]; Surveyor [14.17 h]; Surveyor Helper [14.17 h]; Loader [16 h]; Water Tanker [16 h]; Dump Truck [16 h]; Plate Compactor [16 h]; 2.51m - 3.5m [1.48] | 1,506.69 | 1,506.69 | 0.00031545787419669 | Cons. | Z2 | Storm | Cons | CS.UNSC | GRPs | SUB.C | Ent Rd 01 | Strm |
| B6.33 42 11.11.04 |  | Pipe Laying | 29.16d | 2026-04-11 A | 2026-05-14 A | B6.33 42 11.11.03 | 100% |  |  | Labor [28.35 h]; Foreman [14.17 h]; Plumber Helper [14.17 h]; Plumber [14.17 h]; Operator [14.17 h]; Surveyor [14.17 h]; Surveyor Helper [14.17 h]; Mobile Crane [16 h]; 2.51m - 3.5m [13.35] | 13,546.43 | 13,546.43 | 0.00283622675883264 | Cons. | Z2 | Storm | Cons | CS.UNSC | GRPs | SUB.C | Ent Rd 01 | Strm |
| B6.33 42 11.11.05 |  | Embedment & Test | 29.33d | 2026-04-13 A | 2026-05-17 A | B6.33 42 11.11.04 | 100% |  |  | Labor [56.7 h]; Foreman [28.35 h]; Plumber Helper [28.35 h]; Plumber [28.35 h]; Operator [56.7 h]; Surveyor [28.35 h]; Surveyor Helper [28.35 h]; Loader [32 h]; Water Tanker [32 h]; Dump Truck [32 h]; Plate Compactor [32 h]; Roller Compactor [32 h]; 2.51m - 3.5m [5.94] | 6,026.78 | 6,026.78 | 0.00126183149678676 | Cons. | Z2 | Storm | Cons | CS.UNSC | GRPs | SUB.C | Ent Rd 01 | Strm |
| B6.33 42 11.11.06 |  | Backfilling & Warrning Tape | 54.41d | 2026-04-18 A | 2026-06-24 A | B6.33 42 11.11.05, B6.33 42 11.045 | 100% |  |  | Labor [70.87 h]; Foreman [35.44 h]; Operator [141.75 h]; Surveyor [35.44 h]; Surveyor Helper [35.44 h]; Loader [40 h]; Water Tanker [40 h]; Dump Truck [40 h]; Plate Compactor [40 h]; Roller Compactor [40 h]; 2.51m - 3.5m [2.97] | 3,013.39 | 3,013.39 | 0.000630915748393382 | Cons. | Z2 | Storm | Cons | CS.UNSC | GRPs | SUB.C | Ent Rd 01 | Strm |

| ID | WBS | Activity | Duration | Start | Finish | Predecessors | Complete | Planned start | Planned finish | Total float | Resources | Cost | Actual cost | Weight % | DMM2 Weekly Progress | DMM2 Zones | Networks & Stations | DMM2 Phases | UNASCO | Networks Components | Subcontractors works | Dmm2 Roads | Yellow Sheet |
| --- | --- | --- | --- | --- | --- | --- | --- | --- | --- | --- | --- | --- | --- | --- | --- | --- | --- | --- | --- | --- | --- | --- | --- |
|  | Strom Manholes | **Manholes** |  | 2026-02-26 | 2026-10-22 |  |  |  |  |  |  |  |  |  |  |  |  |  |  |  |  |  |  |
|  | 1 | **?1200** |  | 2026-02-26 | 2026-09-26 |  |  |  |  |  |  |  |  |  |  |  |  |  |  |  |  |  |  |
|  | 4 | **Depth From 1.5m to 2.5m** |  | 2026-02-26 | 2026-09-26 |  |  |  |  |  |  |  |  |  |  |  |  |  |  |  |  |  |  |
| B6.33 05 13.01.02 |  | Excavation & Compaction | 0.75d | 2026-02-26 A | 2026-02-28 A | B6.33 42 11.11.02 | 100% |  |  |  | Labor; Foreman; Operator; Surveyor; Surveyor Helper; Excavator (With Bucket); Water Tanker; Dump Truck; Plate Compactor; MH depth 1.50 - 2.5m |  |  | 2.49372657086146E-005 | Cons. | Z2 | Storm | Cons | CS.UNSC | Manhole | SUB.C | Ent Rd 01 | Strm |
| B6.33 05 13.01.03 |  | Blinding Conc, & RC Base | 5d | 2026-05-01 A | 2026-05-06 A | B6.33 05 13.01.02 | 100% | 2026-05-02 | 2026-05-06 |  | Labor [42.52 h]; Foreman [21.26 h]; Laboratory Officer [21.26 h]; Carpenter [21.26 h]; Steelfixer [21.26 h]; Mason [21.26 h]; MH depth 1.50 - 2.5m [1.07] | 9,648.47 | 9,648.47 | 2.49372657086146E-005 | Cons. | Z2 | Storm | Cons | CS.UNSC | Manhole | SUB.C | Ent Rd 01 | Strm |
| B6.33 05 13.01.04 |  | Manhole Installation (85.00% Completed) | 88d | 2026-06-06 A | 2026-09-15 A | B6.33 05 13.01.03 | 100% |  |  |  | Labor [26.51 h]; Operator [26.51 h]; Surveyor [13.25 h]; Surveyor Helper [13.25 h]; Boom Truck [13.6 h]; Mobile Crane [13.6 h]; MH depth 1.50 - 2.5m [3.65] | 32,804.8 | 32,804.8 | 9.97490628344586E-005 | Cons. | Z2 | Storm | Cons | CS.UNSC | Manhole | SUB.C | Ent Rd 01 | Strm |
| B6.33 05 13.01.05 |  | Test, Internal Finishing, Benching & Cover (85.00% Completed) | 82d | 2026-06-13 A | 2026-09-15 A | B6.33 05 13.01.04 SS | 100% |  |  |  | Labor [53.01 h]; Foreman [26.51 h]; Plumber Helper [26.51 h]; Plumber [26.51 h]; Mason [26.51 h]; MH depth 1.50 - 2.5m [0.91] | 8,201.2 | 8,201.2 | 2.49372657086146E-005 | Cons. | Z2 | Storm | Cons | CS.UNSC | Manhole | SUB.C | Ent Rd 01 | Strm |
| B6.33 05 13.01.06 |  | Backfilling (85.00% Completed) | 76d | 2026-06-20 A | 2026-09-15 A | B6.33 05 13.025, B6.33 05 13.01.05 SS | 100% |  |  |  | Labor [66.27 h]; Foreman [33.13 h]; Operator [66.27 h]; Surveyor [33.13 h]; Surveyor Helper [33.13 h]; Loader [34 h]; Water Tanker [34 h]; Dump Truck [34 h]; Plate Compactor [34 h]; MH depth 1.50 - 2.5m [1.83] | 16,402.4 | 16,402.4 | 4.98745314172292E-005 | Cons. | Z2 | Storm | Cons | CS.UNSC | Manhole | SUB.C | Ent Rd 01 | Strm |
| B6.33 05 13.01.04_R |  | Manhole Installation(Rem) | 2d | 2026-09-16 A | 2026-09-17 A | B6.33 05 13.01.03, B6.33 05 13.01.04 | 100% |  |  |  | Labor [4.68 h]; Operator [4.68 h]; Surveyor [2.34 h]; Surveyor Helper [2.34 h]; Boom Truck [2.4 h]; Mobile Crane [2.4 h]; MH depth 1.50 - 2.5m [0.64] | 5,789.08 | 5,789.08 | 9.97490628344586E-005 | Cons. | Z2 | Storm | Cons | CS.UNSC | Manhole | SUB.C | Ent Rd 01 | Strm |
| B6.33 05 13.01.05_R |  | Test, Internal Finishing, Benching & Cover(Rem) | 2d | 2026-09-22 A | 2026-09-24 A | B6.33 05 13.01.04_R SS, B6.33 05 13.01.05 | 100% | 2026-09-16 | 2026-09-17 |  | Labor [9.36 h]; Foreman [4.68 h]; Plumber Helper [4.68 h]; Plumber [4.68 h]; Mason [4.68 h]; MH depth 1.50 - 2.5m [0.16] | 1,447.27 | 1,447.27 | 2.49372657086146E-005 | Cons. | Z2 | Storm | Cons | CS.UNSC | Manhole | SUB.C | Ent Rd 01 | Strm |
| B6.33 05 13.01.06_R |  | Backfilling(Rem) | 2d | 2026-09-24 A | 2026-09-26 A | B6.33 05 13.025, B6.33 05 13.01.05_R SS, B6.33 05 13.01.06 | 100% | 2026-09-16 | 2026-09-17 |  | Labor [11.69 h]; Foreman [5.85 h]; Operator [11.69 h]; Surveyor [5.85 h]; Surveyor Helper [5.85 h]; Loader [6 h]; Water Tanker [6 h]; Dump Truck [6 h]; Plate Compactor [6 h]; MH depth 1.50 - 2.5m [0.32] | 2,894.54 | 2,894.54 | 4.98745314172292E-005 | Cons. | Z2 | Storm | Cons | CS.UNSC | Manhole | SUB.C | Ent Rd 01 | Strm |
|  | 2 | **?1500** |  | 2026-03-08 | 2026-10-22 |  |  |  |  |  |  |  |  |  |  |  |  |  |  |  |  |  |  |
|  | 4 | **Depth From 2.5m to 3.5m** |  | 2026-03-08 | 2026-10-22 |  |  |  |  |  |  |  |  |  |  |  |  |  |  |  |  |  |  |
| B6.33 05 13.05.02 |  | Excavation & Compaction | 0.75d | 2026-03-08 A | 2026-03-09 A | B6.33 05 13.01.02 | 100% |  |  |  | Labor [28.35 h]; Foreman [14.17 h]; Operator [28.35 h]; Surveyor [14.17 h]; Surveyor Helper [14.17 h]; Excavator (With Bucket) [16 h]; Water Tanker [16 h]; Dump Truck [16 h]; Plate Compactor [16 h]; MH depth 2.51 - 3.5m [0.26] | 3,722.58 | 3,722.58 | 0.00193019830555769 | Cons. | Z2 | Storm | Cons | CS.UNSC | Manhole | SUB.C | Ent Rd 01 | Strm |
| B6.33 05 13.05.03 |  | Blinding Conc, & RC Base (92.00% Completed) | 88d | 2026-06-06 A | 2026-09-15 A | B6.33 05 13.05.02 | 100% |  |  |  | Labor [43.03 h]; Foreman [21.52 h]; Laboratory Officer [21.52 h]; Carpenter [21.52 h]; Steelfixer [21.52 h]; Mason [21.52 h]; MH depth 2.51 - 3.5m [0.16] | 2,283.13 | 2,283.13 | 0.00128677283889427 | Cons. | Z2 | Storm | Cons | CS.UNSC | Manhole | SUB.C | Ent Rd 01 | Strm |
| B6.33 05 13.05.04 |  | Manhole Installation (92.00% Completed) | 82d | 2026-06-13 A | 2026-09-15 A | B6.33 05 13.05.03 SS | 100% |  |  |  | Labor [28.69 h]; Operator [28.69 h]; Surveyor [14.34 h]; Surveyor Helper [14.34 h]; Boom Truck [14.72 h]; Mobile Crane [14.72 h]; MH depth 2.51 - 3.5m [0.73] | 10,594.23 | 10,594.23 | 0.00597090210688867 | Cons. | Z2 | Storm | Cons | CS.UNSC | Manhole | SUB.C | Ent Rd 01 | Strm |
| B6.33 05 13.05.05 |  | Test, Internal Finishing, Benching & Cover (92.00% Completed) | 76d | 2026-06-20 A | 2026-09-15 A | B6.33 05 13.05.04 SS | 100% |  |  |  | Labor [57.38 h]; Foreman [28.69 h]; Plumber Helper [28.69 h]; Plumber [28.69 h]; Mason [28.69 h]; MH depth 2.51 - 3.5m [0.16] | 2,283.13 | 2,283.13 | 0.00128677283889427 | Cons. | Z2 | Storm | Cons | CS.UNSC | Manhole | SUB.C | Ent Rd 01 | Strm |
| B6.33 05 13.05.06 |  | Backfilling (92.00% Completed) | 75d | 2026-06-21 A | 2026-09-15 A | B6.33 05 13.125, B6.33 05 13.05.05 SS | 100% |  |  |  | Labor [71.72 h]; Foreman [35.86 h]; Operator [71.72 h]; Surveyor [35.86 h]; Surveyor Helper [35.86 h]; Loader [36.8 h]; Water Tanker [36.8 h]; Dump Truck [36.8 h]; Plate Compactor [36.8 h]; MH depth 2.51 - 3.5m [0.31] | 4,494.93 | 4,494.93 | 0.00253334051883564 | Cons. | Z2 | Storm | Cons | CS.UNSC | Manhole | SUB.C | Ent Rd 01 | Strm |
| B6.33 05 13.05.03_R |  | Blinding Conc, & RC Base(Rem) | 2d | 2026-09-24 A | 2026-09-27 A | B6.33 05 13.05.02, B6.33 05 13.05.03, B6.33 42 11.31-1 10_R | 100% |  |  |  | Labor [3.74 h]; Foreman [1.87 h]; Laboratory Officer [1.87 h]; Carpenter [1.87 h]; Steelfixer [1.87 h]; Mason [1.87 h]; MH depth 2.51 - 3.5m [0.01] | 198.53 | 198.53 | 0.00128677283889427 | Cons. | Z2 | Storm | Cons | CS.UNSC | Manhole | SUB.C | Ent Rd 01 | Strm |
| B6.33 05 13.05.04_R |  | Manhole Installation(Rem) | 2d | 2026-09-24 A | 2026-09-27 A | B6.33 05 13.05.03_R SS, B6.33 05 13.05.04 | 100% |  |  |  | Labor [2.49 h]; Operator [2.49 h]; Surveyor [1.25 h]; Surveyor Helper [1.25 h]; Boom Truck [1.28 h]; Mobile Crane [1.28 h]; MH depth 2.51 - 3.5m [0.06] | 921.24 | 921.24 | 0.00597090210688867 | Cons. | Z2 | Storm | Cons | CS.UNSC | Manhole | SUB.C | Ent Rd 01 | Strm |
| B6.33 05 13.05.06_R |  | Backfilling(Rem) | 2d | 2026-10-14 A | 2026-10-15 A | B6.33 05 13.125, B6.33 05 13.05.05_R SS, B6.33 05 13.05.06 | 100% |  |  |  | Labor [6.24 h]; Foreman [3.12 h]; Operator [6.24 h]; Surveyor [3.12 h]; Surveyor Helper [3.12 h]; Loader [3.2 h]; Water Tanker [3.2 h]; Dump Truck [3.2 h]; Plate Compactor [3.2 h]; MH depth 2.51 - 3.5m [0.03] | 390.86 | 390.86 | 0.00253334051883564 | Cons. | Z2 | Storm | Cons | CS.UNSC | Manhole | SUB.C | Ent Rd 01 | Strm |
| B6.33 05 13.05.05_R |  | Test, Internal Finishing, Benching & Cover(Rem) | 2d | 2026-10-21 | 2026-10-22 | B6.33 05 13.05.04_R SS, B6.33 05 13.05.05 |  |  |  | 111.32d | Labor [4.99 h]; Foreman [2.49 h]; Plumber Helper [2.49 h]; Plumber [2.49 h]; Mason [2.49 h]; MH depth 2.51 - 3.5m [0.01] | 198.53 |  | 0.00128677283889427 | Cons. | Z2 | Storm | Cons | CS.UNSC | Manhole | SUB.C | Ent Rd 01 | Strm |
|  | 3 | **?2000** |  | 2026-06-06 | 2026-10-22 |  |  |  |  |  |  |  |  |  |  |  |  |  |  |  |  |  |  |
|  | 4 | **Depth From 2.5m to 3.5m** |  | 2026-06-06 | 2026-10-22 |  |  |  |  |  |  |  |  |  |  |  |  |  |  |  |  |  |  |
| B6.33 05 13.07.02 |  | Excavation & Compaction (85.00% Completed) | 88d | 2026-06-06 A | 2026-09-15 A | B6.33 05 13.05.02 | 100% |  |  |  | Labor [26.51 h]; Foreman [13.25 h]; Operator [26.51 h]; Surveyor [13.25 h]; Surveyor Helper [13.25 h]; Excavator (With Bucket) [13.6 h]; Water Tanker [13.6 h]; Dump Truck [13.6 h]; Plate Compactor [13.6 h]; Storm MH depth 2.51 - 3.5m [0.54] | 9,150.32 | 9,150.32 | 0.00208346832855844 | Cons. | Z2 | Storm | Cons | CS.UNSC | Manhole | SUB.C | Ent Rd 01 | Strm |
| B6.33 05 13.07.03 |  | Blinding Conc, & RC Base (85.00% Completed) | 82d | 2026-06-13 A | 2026-09-15 A | B6.33 05 13.07.02 SS | 100% |  |  |  | Labor [39.76 h]; Foreman [19.88 h]; Laboratory Officer [19.88 h]; Carpenter [19.88 h]; Steelfixer [19.88 h]; Mason [19.88 h]; Storm MH depth 2.51 - 3.5m [0.35] | 6,030.89 | 6,030.89 | 0.00137319503473171 | Cons. | Z2 | Storm | Cons | CS.UNSC | Manhole | SUB.C | Ent Rd 01 | Strm |
| B6.33 05 13.07.04 |  | Manhole Installation (85.00% Completed) | 76d | 2026-06-20 A | 2026-09-15 A | B6.33 05 13.07.03 SS | 100% |  |  |  | Labor [26.51 h]; Operator [26.51 h]; Surveyor [13.25 h]; Surveyor Helper [13.25 h]; Boom Truck [13.6 h]; Mobile Crane [13.6 h]; Storm MH depth 2.51 - 3.5m [1.67] | 28,558.85 | 28,558.85 | 0.00625042100380389 | Cons. | Z2 | Storm | Cons | CS.UNSC | Manhole | SUB.C | Ent Rd 01 | Strm |
| B6.33 05 13.07.05 |  | Test, Internal Finishing, Benching & Cover (85.00% Completed) | 74d | 2026-06-22 A | 2026-09-15 A | B6.33 05 13.07.04 SS | 100% |  |  |  | Labor [53.01 h]; Foreman [26.51 h]; Plumber Helper [26.51 h]; Plumber [26.51 h]; Mason [26.51 h]; Storm MH depth 2.51 - 3.5m [0.35] | 6,030.89 | 6,030.89 | 0.00137319503473171 | Cons. | Z2 | Storm | Cons | CS.UNSC | Manhole | SUB.C | Ent Rd 01 | Strm |
| B6.33 05 13.07.06 |  | Backfilling (85.00% Completed) | 73d | 2026-06-23 A | 2026-09-15 A | B6.33 05 13.045, B6.33 05 13.07.05 SS | 100% |  |  |  | Labor [66.27 h]; Foreman [33.13 h]; Operator [66.27 h]; Surveyor [33.13 h]; Surveyor Helper [33.13 h]; Loader [34 h]; Water Tanker [34 h]; Dump Truck [34 h]; Plate Compactor [34 h]; Storm MH depth 2.51 - 3.5m [0.77] | 13,180.31 | 13,180.31 | 0.00300107232895791 | Cons. | Z2 | Storm | Cons | CS.UNSC | Manhole | SUB.C | Ent Rd 01 | Strm |
| B6.33 05 13.07.02_R |  | Excavation & Compaction(Rem) | 2d | 2026-09-24 A | 2026-09-26 A | B6.33 05 13.05.02, B6.33 05 13.07.02 | 100% | 2026-09-16 | 2026-09-17 |  | Labor [4.68 h]; Foreman [2.34 h]; Operator [4.68 h]; Surveyor [2.34 h]; Surveyor Helper [2.34 h]; Excavator (With Bucket) [2.4 h]; Water Tanker [2.4 h]; Dump Truck [2.4 h]; Plate Compactor [2.4 h]; Storm MH depth 2.51 - 3.5m [0.09] | 1,614.76 | 1,614.76 | 0.00208346832855844 | Cons. | Z2 | Storm | Cons | CS.UNSC | Manhole | SUB.C | Ent Rd 01 | Strm |
| B6.33 05 13.07.03_R |  | Blinding Conc, & RC Base(Rem) | 2d | 2026-10-14 A | 2026-10-15 A | B6.33 05 13.07.02_R SS, B6.33 05 13.07.03 | 100% |  |  |  | Labor [7.02 h]; Foreman [3.51 h]; Laboratory Officer [3.51 h]; Carpenter [3.51 h]; Steelfixer [3.51 h]; Mason [3.51 h]; Storm MH depth 2.51 - 3.5m [0.06] | 1,064.28 | 1,064.28 | 0.00137319503473171 | Cons. | Z2 | Storm | Cons | CS.UNSC | Manhole | SUB.C | Ent Rd 01 | Strm |
| B6.33 05 13.07.04_R |  | Manhole Installation(Rem) | 2d | 2026-10-14 A | 2026-10-15 A | B6.33 05 13.07.03_R SS, B6.33 05 13.07.04 | 100% |  |  |  | Labor [4.68 h]; Operator [4.68 h]; Surveyor [2.34 h]; Surveyor Helper [2.34 h]; Boom Truck [2.4 h]; Mobile Crane [2.4 h]; Storm MH depth 2.51 - 3.5m [0.3] | 5,039.8 | 5,039.8 | 0.00625042100380389 | Cons. | Z2 | Storm | Cons | CS.UNSC | Manhole | SUB.C | Ent Rd 01 | Strm |
| B6.33 05 13.07.06_R |  | Backfilling(Rem) | 2d | 2026-10-14 A | 2026-10-15 A | B6.33 05 13.045, B6.33 05 13.07.05_R SS, B6.33 05 13.07.06, B6.33 05 13.01.06_R | 100% |  |  |  | Labor [11.69 h]; Foreman [5.85 h]; Operator [11.69 h]; Surveyor [5.85 h]; Surveyor Helper [5.85 h]; Loader [6 h]; Water Tanker [6 h]; Dump Truck [6 h]; Plate Compactor [6 h]; Storm MH depth 2.51 - 3.5m [0.14] | 2,325.94 | 2,325.94 | 0.00300107232895791 | Cons. | Z2 | Storm | Cons | CS.UNSC | Manhole | SUB.C | Ent Rd 01 | Strm |
| B6.33 05 13.07.05_R |  | Test, Internal Finishing, Benching & Cover(Rem) | 2d | 2026-10-21 | 2026-10-22 | B6.33 05 13.07.04_R SS, B6.33 05 13.07.05 |  |  |  | 111.32d | Labor [9.36 h]; Foreman [4.68 h]; Plumber Helper [4.68 h]; Plumber [4.68 h]; Mason [4.68 h]; Storm MH depth 2.51 - 3.5m [0.06] | 1,064.28 |  | 0.00137319503473171 | Cons. | Z2 | Storm | Cons | CS.UNSC | Manhole | SUB.C | Ent Rd 01 | Strm |

| ID | WBS | Activity | Duration | Start | Finish | Predecessors | Complete | Remaining | Planned start | Planned finish | Total float | Resources | Cost | Actual cost | Weight % | DMM2 Weekly Progress | DMM2 Zones | Networks & Stations | DMM2 Phases | UNASCO | Networks Components | Subcontractors works | Dmm2 Roads | Yellow Sheet |
| --- | --- | --- | --- | --- | --- | --- | --- | --- | --- | --- | --- | --- | --- | --- | --- | --- | --- | --- | --- | --- | --- | --- | --- | --- |
|  | Catch Basins | **Catch Basins** |  | 2026-04-19 | 2026-10-21 |  |  |  |  |  |  |  |  |  |  |  |  |  |  |  |  |  |  |  |
|  | Sing | **Single** |  | 2026-05-03 | 2026-10-03 |  |  |  |  |  |  |  |  |  |  |  |  |  |  |  |  |  |  |  |
| B6.33 05 40.01.170 |  | Excavation, Compaction & Vapour Barrier | 10d | 2026-05-03 A | 2026-05-13 A | B6.33 05 13.05.02 | 100% |  |  |  |  | Labor [28.35 h]; Foreman [14.17 h]; Operator [28.35 h]; Surveyor [14.17 h]; Surveyor Helper [14.17 h]; Excavator (With Bucket) [16 h]; Water Tanker [16 h]; Dump Truck [16 h]; Roller Compactor [16 h]; Single Catch basin [2.98] | 13,460.88 | 13,460.88 | 0.00295277448760277 | Cons. | Z2 | Storm | Cons | CS.UNSC | CBs | SUB.C | Ent Rd 01 | Strm |
| B6.33 05 40.01.180 |  | Blinding Conc. (90.00% Completed) | 110d | 2026-05-06 A | 2026-09-15 A | B6.33 05 40.01.170 | 100% |  |  |  |  | Labor [28.07 h]; Foreman [14.03 h]; Laboratory Officer [14.03 h]; Carpenter [14.03 h]; Steelfixer [14.03 h]; Mason [14.03 h]; Single Catch basin [1.79] | 8,094.16 | 8,094.16 | 0.00197281439564727 | Cons. | Z2 | Storm | Cons | CS.UNSC | CBs | SUB.C | Ent Rd 01 | Strm |
| B6.33 05 40.01.200 |  | Backfilling, DI Frame & Grate Cover Fixing (90.00% Completed) | 93d | 2026-05-27 A | 2026-09-15 A | B6.33 42 11.35-102 SS, B6.33 05 63.072 SS | 100% |  | 2026-05-31 | 2026-09-15 |  | Labor [70.17 h]; Foreman [35.08 h]; Operator [70.17 h]; Surveyor [35.08 h]; Surveyor Helper [35.08 h]; Loader [36 h]; Water Tanker [36 h]; Dump Truck [36 h]; Plate Compactor [36 h]; Single Catch basin [5.36] | 24,229.58 | 24,229.58 | 0.00590554897520555 | Cons. | Z2 | Storm | Cons | CS.UNSC | CBs | SUB.C | Ent Rd 01 | Strm |
| B6.33 05 40.01.190 |  | Catch Basin Installation (90.00% Completed) | 93d | 2026-05-30 A | 2026-09-15 A | B6.33 05 40.01.180 SS, B6.33 05 13.05.04 SS | 100% |  | 2026-05-31 | 2026-09-15 |  | Labor [42.1 h]; Foreman [21.05 h]; Carpenter [21.05 h]; Steelfixer [21.05 h]; Mason [21.05 h]; Operator [42.1 h]; Surveyor [21.05 h]; Surveyor Helper [21.05 h]; Boom Truck [21.6 h]; Single Catch basin [8.04] | 36,344.37 | 36,344.37 | 0.00885832346280832 | Cons. | Z2 | Storm | Cons | CS.UNSC | CBs | SUB.C | Ent Rd 01 | Strm |
| B6.33 05 40.01.180_R |  | Blinding Conc.(Rem) | 2d | 2026-09-21 A | 2026-09-22 A | B6.33 05 40.01.170, B6.33 05 40.01.180 | 100% |  | 2026-09-16 | 2026-09-17 |  | Labor [3.12 h]; Foreman [1.56 h]; Laboratory Officer [1.56 h]; Carpenter [1.56 h]; Steelfixer [1.56 h]; Mason [1.56 h]; Single Catch basin [0.2] | 899.35 | 899.35 | 0.00197281439564727 | Cons. | Z2 | Storm | Cons | CS.UNSC | CBs | SUB.C | Ent Rd 01 | Strm |
| B6.33 05 40.01.190_R |  | Catch Basin Installation(Rem) | 2d | 2026-09-24 A | 2026-09-27 A | B6.33 05 40.01.180_R SS, B6.33 05 13.05.04_R SS, B6.33 05 40.01.190 | 100% |  |  |  |  | Labor [4.68 h]; Foreman [2.34 h]; Carpenter [2.34 h]; Steelfixer [2.34 h]; Mason [2.34 h]; Operator [4.68 h]; Surveyor [2.34 h]; Surveyor Helper [2.34 h]; Boom Truck [2.4 h]; Single Catch basin [0.89] | 4,038.26 | 4,038.26 | 0.00885832346280832 | Cons. | Z2 | Storm | Cons | CS.UNSC | CBs | SUB.C | Ent Rd 01 | Strm |
| B6.33 05 40.01.200_R |  | Backfilling, DI Frame & Grate Cover Fixing(Rem) | 2d | 2026-10-01 A | 2026-10-03 A | B6.33 42 11.35-102_R SS, B6.33 05 63.072_R SS, B6.33 05 40.01.200 | 100% |  | 2026-09-24 | 2026-09-27 |  | Labor [7.8 h]; Foreman [3.9 h]; Operator [7.8 h]; Surveyor [3.9 h]; Surveyor Helper [3.9 h]; Loader [4 h]; Water Tanker [4 h]; Dump Truck [4 h]; Plate Compactor [4 h]; Single Catch basin [0.6] | 2,692.18 | 2,692.18 | 0.00590554897520555 | Cons. | Z2 | Storm | Cons | CS.UNSC | CBs | SUB.C | Ent Rd 01 | Strm |
|  | Dou | **Double** |  | 2026-05-11 | 2026-10-15 |  |  |  |  |  |  |  |  |  |  |  |  |  |  |  |  |  |  |  |
| B6.33 05 40.01.730 |  | Excavation, Compaction & Vapour Barrier (85.00% Completed) | 106d | 2026-05-11 A | 2026-09-15 A | B6.33 05 40.01.170 | 100% |  |  |  |  | Labor [26.51 h]; Foreman [13.25 h]; Operator [26.51 h]; Surveyor [13.25 h]; Surveyor Helper [13.25 h]; Excavator (With Bucket) [13.6 h]; Water Tanker [13.6 h]; Dump Truck [13.6 h]; Roller Compactor [13.6 h]; Double Catch basin [0.51] | 4,469.33 | 4,469.33 | 0.000879450288447266 | Cons. | Z2 | Storm | Cons | CS.UNSC | CBs | SUB.C | Ent Rd 01 | Strm |
| B6.33 05 40.01.740 |  | Blinding Conc. (85.00% Completed) | 104d | 2026-05-13 A | 2026-09-15 A | B6.33 05 40.01.730 SS | 100% |  |  |  |  | Labor [26.51 h]; Foreman [13.25 h]; Laboratory Officer [13.25 h]; Carpenter [13.25 h]; Steelfixer [13.25 h]; Mason [13.25 h]; Double Catch basin [0.33] | 2,936.99 | 2,936.99 | 0.000577924475265344 | Cons. | Z2 | Storm | Cons | CS.UNSC | CBs | SUB.C | Ent Rd 01 | Strm |
| B6.33 05 40.01.760 |  | Backfilling, DI Frame & Grate Cover Fixing (85.00% Completed) | 101d | 2026-05-17 A | 2026-09-15 A | B6.33 42 11.36-112 SS | 100% |  |  |  |  | Labor [66.27 h]; Foreman [33.13 h]; Operator [66.27 h]; Surveyor [33.13 h]; Surveyor Helper [33.13 h]; Loader [34 h]; Water Tanker [34 h]; Dump Truck [34 h]; Plate Compactor [34 h]; Double Catch basin [1.01] | 8,938.68 | 8,938.68 | 0.00175890508448974 | Cons. | Z2 | Storm | Cons | CS.UNSC | CBs | SUB.C | Ent Rd 01 | Strm |
| B6.33 05 40.01.750 |  | Catch Basin Installation (85.00% Completed) | 93.67d | 2026-05-25 A | 2026-09-15 A | B6.33 05 40.01.740 SS | 100% |  |  |  |  | Labor [39.76 h]; Foreman [19.88 h]; Carpenter [19.88 h]; Steelfixer [19.88 h]; Mason [19.88 h]; Operator [39.76 h]; Surveyor [19.88 h]; Surveyor Helper [19.88 h]; Boom Truck [20.4 h]; Double Catch basin [1.54] | 13,535.72 | 13,535.72 | 0.00266348484222734 | Cons. | Z2 | Storm | Cons | CS.UNSC | CBs | SUB.C | Ent Rd 01 | Strm |
| B6.33 05 40.01.730_R |  | Excavation, Compaction & Vapour Barrier(Rem) | 2d | 2026-10-14 A | 2026-10-15 A | B6.33 05 40.01.170, B6.33 05 40.01.730 | 100% |  |  |  |  | Labor [4.68 h]; Foreman [2.34 h]; Operator [4.68 h]; Surveyor [2.34 h]; Surveyor Helper [2.34 h]; Excavator (With Bucket) [2.4 h]; Water Tanker [2.4 h]; Dump Truck [2.4 h]; Roller Compactor [2.4 h]; Double Catch basin [0.09] | 788.71 | 788.71 | 0.000879450288447266 | Cons. | Z2 | Storm | Cons | CS.UNSC | CBs | SUB.C | Ent Rd 01 | Strm |
| B6.33 05 40.01.740_R |  | Blinding Conc.(Rem) | 2d | 2026-10-14 A | 2026-10-15 A | B6.33 05 40.01.730_R SS, B6.33 05 40.01.740 | 100% |  |  |  |  | Labor [4.68 h]; Foreman [2.34 h]; Laboratory Officer [2.34 h]; Carpenter [2.34 h]; Steelfixer [2.34 h]; Mason [2.34 h]; Double Catch basin [0.06] | 518.29 | 518.29 | 0.000577924475265344 | Cons. | Z2 | Storm | Cons | CS.UNSC | CBs | SUB.C | Ent Rd 01 | Strm |
| B6.33 05 40.01.750_R |  | Catch Basin Installation(Rem) | 2d | 2026-10-14 A | 2026-10-15 A | B6.33 05 40.01.740_R SS, B6.33 05 40.01.750 | 100% |  |  |  |  | Labor [7.02 h]; Foreman [3.51 h]; Carpenter [3.51 h]; Steelfixer [3.51 h]; Mason [3.51 h]; Operator [7.02 h]; Surveyor [3.51 h]; Surveyor Helper [3.51 h]; Boom Truck [3.6 h]; Double Catch basin [0.27] | 2,388.66 | 2,388.66 | 0.00266348484222734 | Cons. | Z2 | Storm | Cons | CS.UNSC | CBs | SUB.C | Ent Rd 01 | Strm |
| B6.33 05 40.01.760_R |  | Backfilling, DI Frame & Grate Cover Fixing(Rem) | 2d | 2026-10-14 A | 2026-10-15 A | B6.33 42 11.36-112_R SS, B6.33 05 40.01.760 | 100% |  |  |  |  | Labor [11.69 h]; Foreman [5.85 h]; Operator [11.69 h]; Surveyor [5.85 h]; Surveyor Helper [5.85 h]; Loader [6 h]; Water Tanker [6 h]; Dump Truck [6 h]; Plate Compactor [6 h]; Double Catch basin [0.18] | 1,577.41 | 1,577.41 | 0.00175890508448974 | Cons. | Z2 | Storm | Cons | CS.UNSC | CBs | SUB.C | Ent Rd 01 | Strm |
|  | UPVC | **UPVC** |  | 2026-04-19 | 2026-10-21 |  |  |  |  |  |  |  |  |  |  |  |  |  |  |  |  |  |  |  |
|  | UPVC300 | **?300 From 0.0 to 1.5m** |  | 2026-04-19 | 2026-10-21 |  |  |  |  |  |  |  |  |  |  |  |  |  |  |  |  |  |  |  |
| B6.33 42 11.35-102 |  | Fittings & Pipe Installation (50.00% Completed) | 125d | 2026-04-19 A | 2026-09-15 A | B6.33 42 11.35-101 SS | 100% |  |  |  |  | Labor [15.59 h]; Foreman [7.8 h]; Plumber Helper [7.8 h]; Plumber [7.8 h]; Surveyor [7.8 h]; Surveyor Helper [7.8 h]; less than 1.5 [93.23] | 56,071.92 | 56,071.92 | 0.0603343421083148 | Cons. | Z2 | Storm | Cons | CS.UNSC | UPVC | SUB.C | Ent Rd 01 | Strm |
| B6.33 42 11.35-101 |  | Catch Basin Opening Prep. (83.46% Completed) | 88d | 2026-06-06 A | 2026-09-15 A | B6.33 05 40.01.190 SS | 100% |  |  |  |  | Labor [26.03 h]; Foreman [13.01 h]; Plumber Helper [13.01 h]; Plumber [13.01 h]; less than 1.5 [38.91] | 23,399.49 | 23,399.49 | 0.0150835855285905 | Cons. | Z2 | Storm | Cons | CS.UNSC | UPVC | SUB.C | Ent Rd 01 | Strm |
| B6.33 42 11.35-101_R |  | Catch Basin Opening Prep.(Rem) | 2.09d | 2026-10-07 A | 2026-10-21 | B6.33 05 40.01.190_R SS, B6.33 42 11.35-101 | 68% | 0.67d | 2026-10-07 | 2026-10-10 | 112.65d | Labor [5.16 h]; Foreman [2.58 h]; Plumber Helper [2.58 h]; Plumber [2.58 h]; less than 1.5 [7.71] | 4,636.48 | 3,152.8 | 0.0150835855285905 | Cons. | Z2 | Storm | Cons | CS.UNSC | UPVC | SUB.C | Ent Rd 01 | Strm |
| B6.33 42 11.35-102_R |  | Fittings & Pipe Installation(Rem) | 2d | 2026-10-07 A | 2026-10-21 | B6.33 42 11.35-101_R SS, B6.33 42 11.35-102 | 68% | 0.64d | 2026-10-07 | 2026-10-08 | 112.68d | Labor [15.59 h]; Foreman [7.8 h]; Plumber Helper [7.8 h]; Plumber [7.8 h]; Surveyor [7.8 h]; Surveyor Helper [7.8 h]; less than 1.5 [93.23] | 56,071.92 | 38,128.91 | 0.0603343421083148 | Cons. | Z2 | Storm | Cons | CS.UNSC | UPVC | SUB.C | Ent Rd 01 | Strm |

| ID | WBS | Activity | Duration | Start | Finish | Predecessors | Complete | Remaining | Planned start | Planned finish | Total float | Free float | Resources | Cost | Actual cost | Weight % | DMM2 Weekly Progress | DMM2 Zones | Networks & Stations | DMM2 Phases | UNASCO | Networks Components | Subcontractors works | Dmm2 Roads | Yellow Sheet | All Electrical Scope |
| --- | --- | --- | --- | --- | --- | --- | --- | --- | --- | --- | --- | --- | --- | --- | --- | --- | --- | --- | --- | --- | --- | --- | --- | --- | --- | --- |
|  | UPVC3001 | **?400 From 0.0 to 1.5m** |  | 2026-04-29 | 2026-10-21 |  |  |  |  |  |  |  |  |  |  |  |  |  |  |  |  |  |  |  |  |  |
| B6.33 42 11.36-112 |  | Fittings & Pipe Installation (83.46% Completed) | 116d | 2026-04-29 A | 2026-09-15 A | B6.33 42 11.36-111 SS | 100% |  |  |  |  |  | Labor [26.03 h]; Foreman [13.01 h]; Plumber Helper [13.01 h]; Plumber [13.01 h]; Surveyor [13.01 h]; Surveyor Helper [13.01 h]; less than 1.5 [42.07] | 25,262.23 | 25,262.23 | 0.0175117698005694 | Cons. | Z2 | Storm | Cons | CS.UNSC | UPVC | SUB.C | Ent Rd 01 | Strm |  |
| B6.33 42 11.36-111 |  | Catch Basin Opening Prep. (83.46% Completed) | 88d | 2026-06-06 A | 2026-09-15 A | B6.33 05 40.01.190 SS | 100% |  |  |  |  |  | Labor [26.03 h]; Foreman [13.01 h]; Plumber Helper [13.01 h]; Plumber [13.01 h]; less than 1.5 [10.52] | 6,315.56 | 6,315.56 | 0.00437794245014235 | Cons. | Z2 | Storm | Cons | CS.UNSC | UPVC | SUB.C | Ent Rd 01 | Strm |  |
| B6.33 42 11.36-111_R |  | Catch Basin Opening Prep.(Rem) | 2.09d | 2026-10-07 A | 2026-10-21 | B6.33 05 40.01.190_R SS, B6.33 42 11.36-111 | 68% | 0.67d | 2026-10-07 | 2026-10-10 | 112.65d |  | Labor [5.16 h]; Foreman [2.58 h]; Plumber Helper [2.58 h]; Plumber [2.58 h]; less than 1.5 [2.08] | 1,251.39 | 850.95 | 0.00437794245014235 | Cons. | Z2 | Storm | Cons | CS.UNSC | UPVC | SUB.C | Ent Rd 01 | Strm |  |
| B6.33 42 11.36-112_R |  | Fittings & Pipe Installation(Rem) | 2.09d | 2026-10-07 A | 2026-10-21 | B6.33 42 11.36-111_R SS, B6.33 42 11.36-112 | 68% | 0.67d | 2026-10-07 | 2026-10-10 | 112.65d |  | Labor [5.16 h]; Foreman [2.58 h]; Plumber Helper [2.58 h]; Plumber [2.58 h]; Surveyor [2.58 h]; Surveyor Helper [2.58 h]; less than 1.5 [8.33] | 5,005.57 | 3,403.79 | 0.0175117698005694 | Cons. | Z2 | Storm | Cons | CS.UNSC | UPVC | SUB.C | Ent Rd 01 | Strm |  |
|  | Dry Networks | **Dry Networks** |  | 2026-10-21 | 2026-12-12 |  |  |  |  |  |  |  |  |  |  |  |  |  |  |  |  |  |  |  |  |  |
|  | MV | **Medium Voltage Network** |  | 2026-10-21 | 2026-11-19 |  |  |  |  |  |  |  |  |  |  |  |  |  |  |  |  |  |  |  |  |  |
|  | Duct Banks | **Duct Banks** |  | 2026-10-21 | 2026-11-19 |  |  |  |  |  |  |  |  |  |  |  |  |  |  |  |  |  |  |  |  |  |
|  | 4 Way | **4 Way** |  | 2026-10-21 | 2026-11-19 |  |  |  |  |  |  |  |  |  |  |  |  |  |  |  |  |  |  |  |  |  |
| B2.31 23 00.602 |  | Excavation | 3d | 2026-10-21 | 2026-10-24 | B6.33 42 11.02.06, B6.33 42 11.04.06, B6.33 42 11.08.06, B6.33 42 11.11.06 |  |  |  |  | 32.32d | 0d | Labor [31.18 h]; Foreman [15.59 h]; Operator [31.18 h]; Surveyor [15.59 h]; Surveyor Helper [15.59 h]; Excavator (With Bucket) [16 h]; Water Tanker [16 h]; Dump Truck [16 h]; Plate Compactor [16 h]; Excavation for Trench size 60cm wide and 80cm deep ( for 2 cables) [83.13]; Duct bank for MV cables UPVC (4xDia. 150mm) [2.75] | 3,411.59 |  | 0.00233790321174861 | Cons. | Z2 | MV | Cons |  | Cbl&Dct | SUB.C | Ent Rd 01 | MV | allElec |
| B2.33 71 00.212 |  | Shuttering, Steel Fixing Incl. UPVC Pipe & Conc. Cast | 7d | 2026-10-25 | 2026-11-01 | B2.31 23 00.602 |  |  |  |  | 32.32d | 0d | Labor [93.55 h]; Laboratory Officer [46.78 h]; Carpenter [46.78 h]; Steelfixer [46.78 h]; Mason [46.78 h]; Surveyor [46.78 h]; Surveyor Helper [46.78 h]; Excavation for Trench size 60cm wide and 80cm deep ( for 2 cables) [83.13]; Duct bank for MV cables UPVC (4xDia. 150mm) [8.25] | 6,439.38 |  | 0.00510557719618019 | Cons. | Z2 | MV | Cons |  | Cbl&Dct | SUB.C | Ent Rd 01 | MV | allElec |
| B2.33 71 00.213 |  | Backfilling & Warrning Tape | 6d | 2026-11-14 | 2026-11-19 | B2.33 71 00.212, B2.33 71 49.23.69, B2.33 71 49.23.70, B2.33 71 19 17_R |  |  |  |  | 32.32d | 0d | Labor [77.96 h]; Foreman [38.98 h]; Operator [155.92 h]; Surveyor [38.98 h]; Surveyor Helper [38.98 h]; Loader [40 h]; Water Tanker [40 h]; Dump Truck [40 h]; Plate Compactor [40 h]; Roller Compactor [40 h]; Excavation for Trench size 60cm wide and 80cm deep ( for 2 cables) [166.24]; Duct bank for MV cables UPVC (4xDia. 150mm) [2.75] | 5,308.83 |  | 0.003291739895321 | Cons. | Z2 | MV | Cons |  | Cbl&Dct | SUB.C | Ent Rd 01 | MV | allElec |
|  | Cables | **Cables** |  | 2026-11-02 | 2026-11-12 |  |  |  |  |  |  |  |  |  |  |  |  |  |  |  |  |  |  |  |  |  |
|  | 3C,500mm2 | **3C,500mm2** |  | 2026-11-02 | 2026-11-12 |  |  |  |  |  |  |  |  |  |  |  |  |  |  |  |  |  |  |  |  |  |
| B2.33 71 49.23.68 |  | Cable 13.8 kV Unarmored | 4d | 2026-11-02 | 2026-11-05 | B2.33 71 00.212 |  |  |  |  | 32.32d | 0d | Labor [46.78 h]; Foreman [23.39 h]; Operator [46.78 h]; Boom Truck [24 h]; Electrician [23.39 h]; Cable 13.8 kV 3Cx 500 mm² Al XLPE,/LLDPE / Unarmored [681.79] | 234,058.34 |  | 0.0447374191430308 | Cons. | Z2 | MV | Cons |  | Cbl&Dct | SUB.C | Ent Rd 01 | MV | allElec |
| B2.33 71 49.23.69 |  | Straight joints cables | 3d | 2026-11-07 | 2026-11-09 | B2.33 71 49.23.68 |  |  |  |  | 32.32d | 0d | Labor [31.18 h]; Foreman [15.59 h]; Electrician [15.59 h]; Straight joints cables for 13.8 kv 3Cx 500 mm², Al /XLPE/LLDPE [2] | 7,880.95 |  | 0.00396214380929156 | Cons. | Z2 | MV | Cons |  | Cbl&Dct | SUB.C | Ent Rd 01 | MV | allElec |
| B2.33 71 49.23.70 |  | Cable Termination | 3d | 2026-11-10 | 2026-11-12 | B2.33 71 49.23.69 |  |  |  |  | 32.32d | 0d | Labor [31.18 h]; Foreman [15.59 h]; Electrician [15.59 h]; Cable Termination for 13.8 kv 3Cx 500 mm², Al /XLPE/LLDPE [0.91] | 3,058.5 |  | 0.00153766139892947 | Cons. | Z2 | MV | Cons |  | Cbl&Dct | SUB.C | Ent Rd 01 | MV | allElec |
|  | LV Network | **Low Voltage Network** |  | 2026-11-21 | 2026-12-03 |  |  |  |  |  |  |  |  |  |  |  |  |  |  |  |  |  |  |  |  |  |
|  | Duct Banks | **Duct Banks** |  | 2026-11-21 | 2026-12-03 |  |  |  |  |  |  |  |  |  |  |  |  |  |  |  |  |  |  |  |  |  |
|  | 2 Way | **2 Way** |  | 2026-11-21 | 2026-11-29 |  |  |  |  |  |  |  |  |  |  |  |  |  |  |  |  |  |  |  |  |  |
| B2.33 71 00 02 46 |  | Excavation | 2d | 2026-11-21 | 2026-11-22 | B2.33 71 00.213 |  |  |  |  | 62.32d | 0d | Labor [31.18 h]; Foreman [15.59 h]; Operator [31.18 h]; Surveyor [15.59 h]; Surveyor Helper [15.59 h]; Excavator (With Bucket) [16 h]; Water Tanker [16 h]; Dump Truck [16 h]; Plate Compactor [16 h]; Excavation for Trench size 40cm wide and 65cm deep (for 1 cable); Duct bank for LV cables UPVC (2xDia. 110mm) [10]; SL LV Excavation for Trench size 40cm wide and 65cm deep (for 1 cable) | 2,755.67 |  | 0.00117159568357235 | Cons. | Z2 | LV | Cons |  | Cbl&Dct | SUB.C | Ent Rd 01 | LV | allElec |
| B2.33 71 00 02 47 |  | Shuttering, Steel Fixing Incl. UPVC Pipe & Conc. Cast | 3d | 2026-11-23 | 2026-11-25 | B2.33 71 00 02 46 |  |  |  |  | 63.32d | 0d | Labor [46.78 h]; Laboratory Officer [23.39 h]; Carpenter [23.39 h]; Steelfixer [23.39 h]; Mason [23.39 h]; Surveyor [23.39 h]; Surveyor Helper [23.39 h]; Excavation for Trench size 40cm wide and 65cm deep (for 1 cable); Duct bank for LV cables UPVC (2xDia. 110mm) [30]; SL LV Excavation for Trench size 40cm wide and 65cm deep (for 1 cable) | 8,270.78 |  | 0.00351663216670667 | Cons. | Z2 | LV | Cons |  | Cbl&Dct | SUB.C | Ent Rd 01 | LV | allElec |
| B2.33 71 00 02 48 |  | Backfilling & Warrning Tape | 3d | 2026-11-26 | 2026-11-29 | B2.33 71 00 02 47 |  |  |  |  | 63.32d | 1d | Labor [77.96 h]; Foreman [38.98 h]; Operator [155.92 h]; Surveyor [38.98 h]; Surveyor Helper [38.98 h]; Loader [40 h]; Water Tanker [40 h]; Dump Truck [40 h]; Plate Compactor [40 h]; Roller Compactor [40 h]; Excavation for Trench size 40cm wide and 65cm deep (for 1 cable); Duct bank for LV cables UPVC (2xDia. 110mm) [10.05]; SL LV Excavation for Trench size 40cm wide and 65cm deep (for 1 cable) | 2,770.71 |  | 0.00117668078792652 | Cons. | Z2 | LV | Cons |  | Cbl&Dct | SUB.C | Ent Rd 01 | LV | allElec |
|  | 4 Way | **4 Way** |  | 2026-11-23 | 2026-12-03 |  |  |  |  |  |  |  |  |  |  |  |  |  |  |  |  |  |  |  |  |  |
| B2.33 71 00 02 49 |  | Excavation | 2d | 2026-11-23 | 2026-11-24 | B2.33 71 00 02 46, DMM2-Proc-Delv-4748_R, DMM2-Proc-Delv-7199_R |  |  |  |  | 62.32d | 0d | Labor [31.18 h]; Foreman [15.59 h]; Operator [31.18 h]; Surveyor [15.59 h]; Surveyor Helper [15.59 h]; Excavator (With Bucket) [16 h]; Water Tanker [16 h]; Dump Truck [16 h]; Plate Compactor [16 h]; Excavation for Trench size 60cm wide and 65cm deep ( for 2 cables); Duct bank for LV cables UPVC (4xDia. 110mm) [12.4]; SL LV Excavation for Trench size 60cm wide and 65cm deep ( for 2 cables) | 5,225.87 |  | 0.00384843522581632 | Cons. | Z2 | LV | Cons |  | Cbl&Dct | SUB.C | Ent Rd 01 | LV | allElec |
| B2.33 71 00 02 50 |  | Shuttering, Steel Fixing Incl. UPVC Pipe & Conc. Cast | 3d | 2026-11-25 | 2026-11-28 | B2.33 71 00 02 49 |  |  |  |  | 62.32d | 0d | Labor [46.78 h]; Laboratory Officer [23.39 h]; Carpenter [23.39 h]; Steelfixer [23.39 h]; Mason [23.39 h]; Surveyor [23.39 h]; Surveyor Helper [23.39 h]; Excavation for Trench size 60cm wide and 65cm deep ( for 2 cables); Duct bank for LV cables UPVC (4xDia. 110mm) [37.2]; SL LV Excavation for Trench size 60cm wide and 65cm deep ( for 2 cables) | 15,677.61 |  | 0.011545305677449 | Cons. | Z2 | LV | Cons |  | Cbl&Dct | SUB.C | Ent Rd 01 | LV | allElec |
| B2.33 71 00 02 51 |  | Backfilling & Warrning Tape | 3d | 2026-12-01 | 2026-12-03 | B2.33 71 00 02 50, B2.33 71 00 01 1, B2.33 71 00 02 48 |  |  |  |  | 62.32d | 0d | Labor [77.96 h]; Foreman [38.98 h]; Operator [155.92 h]; Surveyor [38.98 h]; Surveyor Helper [38.98 h]; Loader [40 h]; Water Tanker [40 h]; Dump Truck [40 h]; Plate Compactor [40 h]; Roller Compactor [40 h]; Excavation for Trench size 60cm wide and 65cm deep ( for 2 cables); Duct bank for LV cables UPVC (4xDia. 110mm) [12.4]; SL LV Excavation for Trench size 60cm wide and 65cm deep ( for 2 cables) | 5,225.87 |  | 0.00384843522581632 | Cons. | Z2 | LV | Cons |  | Cbl&Dct | SUB.C | Ent Rd 01 | LV | allElec |

| ID | WBS | Activity | Duration | Start | Finish | Predecessors | Total float | Free float | Resources | Cost | Weight % | DMM2 Weekly Progress | DMM2 Zones | Networks & Stations | DMM2 Phases | Networks Components | All Electrical Scope | Subcontractors works | Dmm2 Roads | Yellow Sheet |
| --- | --- | --- | --- | --- | --- | --- | --- | --- | --- | --- | --- | --- | --- | --- | --- | --- | --- | --- | --- | --- |
|  | Cables | **Cables** |  | 2026-11-29 | 2026-11-30 |  |  |  |  |  |  |  |  |  |  |  |  |  |  |  |
|  | 4C,10+1C,10mm2 | **4C,10+1C,10mm2** |  | 2026-11-29 | 2026-11-30 |  |  |  |  |  |  |  |  |  |  |  |  |  |  |  |
| B2.33 71 00 01 1 |  | Cable Pulling | 2d | 2026-11-29 | 2026-11-30 | B2.33 71 00 02 50, B2.33 71 00 02 47 | 62.32d | 0d | Labor [93.55 h]; Foreman [46.78 h]; Surveyor [46.78 h]; Surveyor Helper [46.78 h]; Electrician [46.78 h]; Cable, Copper 4x10mm2/ CU/XLPE/SWA/PVC + 1x10mm2 CU/PVC [1535.57] | 95,724.21 | 0.0182958037285517 | Cons. | Z2 | LV | Cons | Cbl&Dct | allElec | SUB.C | Ent Rd 01 | LV |
|  | Street Lighting | **Street Lighting** |  | 2026-11-21 | 2026-12-09 |  |  |  |  |  |  |  |  |  |  |  |  |  |  |  |
|  | Duct Banks | **Duct Banks** |  | 2026-11-25 | 2026-12-03 |  |  |  |  |  |  |  |  |  |  |  |  |  |  |  |
|  | 4 Way | **4 Way** |  | 2026-11-25 | 2026-12-03 |  |  |  |  |  |  |  |  |  |  |  |  |  |  |  |
| B2.33 71 00 02 52 |  | Excavation | 2d | 2026-11-25 | 2026-11-26 | B2.33 71 00 02 49 | 62.32d | 0d | Labor [31.18 h]; Foreman [15.59 h]; Operator [31.18 h]; Surveyor [15.59 h]; Surveyor Helper [15.59 h]; Excavator (With Bucket) [16 h]; Water Tanker [16 h]; Dump Truck [16 h]; Plate Compactor [16 h]; SL Excavation for Trench size 60cm wide and 65cm deep ( for 2 cables); Road Crossing Duct for Street Lighting cables UPVC (4xDia. 110mm) [8.92] | 3,759.25 | 0.00153753780264308 | Cons. | Z2 | SL | Cons | Cables | allElec | SUB.C | Ent Rd 01 | SL |
| B2.33 71 00 02 53 |  | Shuttering, Steel Fixing Incl. UPVC Pipe & Conc. Cast | 3d | 2026-11-28 | 2026-11-30 | B2.33 71 00 02 52 | 62.32d | 0d | Labor [46.78 h]; Laboratory Officer [23.39 h]; Carpenter [23.39 h]; Steelfixer [23.39 h]; Mason [23.39 h]; Surveyor [23.39 h]; Surveyor Helper [23.39 h]; SL Excavation for Trench size 60cm wide and 65cm deep ( for 2 cables); Road Crossing Duct for Street Lighting cables UPVC (4xDia. 110mm) [26.76] | 11,277.76 | 0.00461261340792926 | Cons. | Z2 | SL | Cons | Cables | allElec | SUB.C | Ent Rd 01 | SL |
| B2.33 71 00 02 54 |  | Backfilling & Warrning Tape | 3d | 2026-12-01 | 2026-12-03 | B2.33 71 00 02 53, B2.33 71 16.54 | 67.32d | 5d | Labor [77.96 h]; Foreman [38.98 h]; Operator [155.92 h]; Surveyor [38.98 h]; Surveyor Helper [38.98 h]; Loader [40 h]; Water Tanker [40 h]; Dump Truck [40 h]; Plate Compactor [40 h]; Roller Compactor [40 h]; SL Excavation for Trench size 60cm wide and 65cm deep ( for 2 cables); Road Crossing Duct for Street Lighting cables UPVC (4xDia. 110mm) [8.92] | 3,759.25 | 0.00153753780264308 | Cons. | Z2 | SL | Cons | Cables | allElec | SUB.C | Ent Rd 01 | SL |
|  | Drawpits | **Drawpits** |  | 2026-11-28 | 2026-12-07 |  |  |  |  |  |  |  |  |  |  |  |  |  |  |  |
| B2.33 71 00 02 55 |  | Excavation | 3d | 2026-11-28 | 2026-11-30 | B2.33 71 00 02 52 | 72.32d | 0d | Labor [46.78 h]; Foreman [23.39 h]; Operator [46.78 h]; Surveyor [23.39 h]; Surveyor Helper [23.39 h]; Excavator (With Bucket) [24 h]; Water Tanker [24 h]; Dump Truck [24 h]; Plate Compactor [24 h]; Drawpit with medium duty steel cover, size600x600x900mm, [2.43] | 14,384.57 | 0.0025348715507172 | Cons. | Z2 | SL | Cons | Cables | allElec | SUB.C | Ent Rd 01 | SL |
| B2.33 71 00 02 56 |  | Drawpits Installation | 3d | 2026-12-01 | 2026-12-03 | B2.33 71 00 02 55 | 72.32d | 0d | Labor [46.78 h]; Laboratory Officer [23.39 h]; Carpenter [23.39 h]; Steelfixer [23.39 h]; Mason [23.39 h]; Surveyor [23.39 h]; Surveyor Helper [23.39 h]; Drawpit with medium duty steel cover, size600x600x900mm, [7.28] | 43,153.72 | 0.0076046146521516 | Cons. | Z2 | SL | Cons | Cables | allElec | SUB.C | Ent Rd 01 | SL |
| B2.33 71 00 02 57 |  | Backfilling & Warrning Tape | 3d | 2026-12-05 | 2026-12-07 | B2.33 71 00 02 56 | 72.32d |  | Labor [77.96 h]; Foreman [38.98 h]; Operator [155.92 h]; Surveyor [38.98 h]; Surveyor Helper [38.98 h]; Loader [40 h]; Water Tanker [40 h]; Dump Truck [40 h]; Plate Compactor [40 h]; Roller Compactor [40 h]; Drawpit with medium duty steel cover, size600x600x900mm, [2.43] | 14,384.57 | 0.0025348715507172 | Cons. | Z2 | SL | Cons | Cables | allElec | SUB.C | Ent Rd 01 | SL |
|  | Cables | **Cables** |  | 2026-12-01 | 2026-12-09 |  |  |  |  |  |  |  |  |  |  |  |  |  |  |  |
|  | 4C,10+1C,10mm2 | **4C,10+1C,10mm2** |  | 2026-12-01 | 2026-12-09 |  |  |  |  |  |  |  |  |  |  |  |  |  |  |  |
| B2.33 71 19 82 |  | Land Adjustment | 3d | 2026-12-01 | 2026-12-03 | B2.33 71 00 02 53, B1.2.32 11 26.01.4 | 62.32d | 0d | Labor [46.78 h]; Foreman [23.39 h]; Operator [31.18 h]; Surveyor [7.8 h]; Surveyor Helper [7.8 h]; Excavator (With Bucket) [24 h]; Water Tanker [24 h]; Dump Truck [24 h]; Roller Compactor [24 h]; SL Cable, Copper 4x10mm2/ CU/XLPE/SWA/PVC + 1x10mm2 CU/PVC [416.5] | 25,963.96 | 0.00496258855349975 | Cons. | Z2 | SL | Cons | Cables | allElec | SUB.C | Ent Rd 01 | SL |
| B2.33 71 49.23.122 |  | Cable Pulling | 2d | 2026-12-05 | 2026-12-06 | B2.33 71 19 82 | 62.32d | 0d | Labor [62.37 h]; Foreman [31.18 h]; Surveyor [31.18 h]; Surveyor Helper [31.18 h]; Electrician [31.18 h]; SL Cable, Copper 4x10mm2/ CU/XLPE/SWA/PVC + 1x10mm2 CU/PVC [1249.49] | 77,890.96 | 0.0148875878281853 | Cons. | Z2 | SL | Cons | Cables | allElec | SUB.C | Ent Rd 01 | SL |
| B2.33 71 19 92 |  | Backfilling | 3d | 2026-12-07 | 2026-12-09 | B2.33 71 49.23.122 | 62.32d | 0d | Labor [93.55 h]; Foreman [46.78 h]; Operator [93.55 h]; Surveyor [46.78 h]; Surveyor Helper [46.78 h]; Loader [48 h]; Water Tanker [48 h]; Dump Truck [48 h]; Plate Compactor [48 h]; SL Cable, Copper 4x10mm2/ CU/XLPE/SWA/PVC + 1x10mm2 CU/PVC [416.5] | 25,963.96 | 0.00496258855349975 | Cons. | Z2 | SL | Cons | Cables | allElec | SUB.C | Ent Rd 01 | SL |
|  | SL Poles | **SL Poles** |  | 2026-11-21 | 2026-12-05 |  |  |  |  |  |  |  |  |  |  |  |  |  |  |  |
|  | Pole (10 M Sngl Arm) | **Pole (10 M Single Arm)** |  | 2026-11-21 | 2026-12-05 |  |  |  |  |  |  |  |  |  |  |  |  |  |  |  |
| B2.33 71 16.39 |  | Excavation | 3d | 2026-11-21 | 2026-11-23 | B2.33 71 00.213, B2.33 71 16.51, B1.2.32 11 26.01.4 | 69.32d | 0d | Labor [46.78 h]; Foreman [23.39 h]; Operator [46.78 h]; Surveyor [23.39 h]; Surveyor Helper [23.39 h]; Excavator (With Bucket) [24 h]; Dump Truck [24 h]; Lighting poles with 1 arm, height of ( 10) meters [6.6] | 58,898.5 | 0.0112471278804954 | Cons. | Z2 | SL | Cons | Pls&Lmn | allElec | SUB.C | Ent Rd 01 | SL |
| B2.33 71 16.40 |  | PC & RC Foundation | 3d | 2026-11-24 | 2026-11-26 | B2.33 71 16.39 | 69.32d | 0d | Labor [77.96 h]; Foreman [38.98 h]; Laboratory Officer [38.98 h]; Carpenter [38.98 h]; Steelfixer [38.98 h]; Mason [38.98 h]; Lighting poles with 1 arm, height of ( 10) meters [6.6] | 58,898.5 | 0.0112471278804954 | Cons. | Z2 | SL | Cons | Pls&Lmn | allElec | SUB.C | Ent Rd 01 | SL |
| B2.33 71 16.41 |  | Lighting Poles Installation Incl power box, Cables | 3d | 2026-11-28 | 2026-11-30 | B2.33 71 16.40 | 69.32d | 0d | Labor [93.55 h]; Operator [93.55 h]; Mobile Crane [48 h]; Electrician [46.78 h]; Lighting poles with 1 arm, height of ( 10) meters [13.2] | 117,797 | 0.0224942557609906 | Cons. | Z2 | SL | Cons | Pls&Lmn | allElec | SUB.C | Ent Rd 01 | SL |
| B2.26.56.19.3 |  | Lighting Luminares Inst | 2d | 2026-12-01 | 2026-12-02 | B2.33 71 16.41 | 69.32d | 0d | Labor [62.37 h]; Operator [62.37 h]; Manlift [32 h]; Street Lighting( LED), Lamp Lumen: 14560, Luminare Lumen:12700 , complete with control gear and lamp, (80) WATT. [26.67] | 24,727.57 | 0.0047113256383061 | Cons. | Z2 | SL | Cons | Pls&Lmn | allElec | SUB.C | Ent Rd 01 | SL |
| B2.33 71 16.42 |  | Backfilling, Grouting & Chamfering | 2d | 2026-12-03 | 2026-12-05 | B2.26.56.19.3, B2.33 71 16.70, B2.33 71 00 02 159 | 69.32d | 0d | Labor [93.55 h]; Foreman [46.78 h]; Mason [46.78 h]; Operator [93.55 h]; Surveyor [46.78 h]; Surveyor Helper [46.78 h]; Loader [48 h]; Water Tanker [48 h]; Dump Truck [48 h]; Plate Compactor [48 h]; Lighting poles with 1 arm, height of ( 10) meters [6.6] | 58,898.5 | 0.0112471278804954 | Cons. | Z2 | SL | Cons | Pls&Lmn | allElec | SUB.C | Ent Rd 01 | SL |

| ID | WBS | Activity | Duration | Start | Finish | Predecessors | Total float | Free float | Resources | Cost | Weight % | DMM2 Weekly Progress | DMM2 Zones | Networks & Stations | DMM2 Phases | Networks Components | All Electrical Scope | Subcontractors works | Dmm2 Roads | Yellow Sheet |
| --- | --- | --- | --- | --- | --- | --- | --- | --- | --- | --- | --- | --- | --- | --- | --- | --- | --- | --- | --- | --- |
|  | Telecommunication | **Telecommunication Network** |  | 2026-12-01 | 2026-12-12 |  |  |  |  |  |  |  |  |  |  |  |  |  |  |  |
|  | Ducts | **Ducts** |  | 2026-12-01 | 2026-12-08 |  |  |  |  |  |  |  |  |  |  |  |  |  |  |  |
|  | (6*50mm) | **Size (6*50mm) HDPE ducts** |  | 2026-12-01 | 2026-12-06 |  |  |  |  |  |  |  |  |  |  |  |  |  |  |  |
| B2.1.33 81 26.69 |  | Excavation | 1d | 2026-12-01 | 2026-12-01 | B2.31 23 00.613 | 60.32d | 0d | Labor [31.18 h]; Foreman [15.59 h]; Operator [31.18 h]; Surveyor [15.59 h]; Surveyor Helper [15.59 h]; Excavator (With Bucket) [16 h]; Water Tanker [16 h]; Dump Truck [16 h]; Plate Compactor [16 h]; (6*50mm) HDPE ducts [125.82] | 35,460.35 | 0.00690393952512995 | Cons. | Z2 | Telecom | Cons | DCT&MNH | allElec | SUB.C | Ent Rd 01 | TEL |
| B2.1.33 81 26.70 |  | HDPE Pipe, Shuttering, Steel Fixing & Conc. Cast | 2d | 2026-12-02 | 2026-12-03 | B2.1.33 81 26.69 | 65.32d | 0d | Labor [77.96 h]; Laboratory Officer [38.98 h]; Carpenter [38.98 h]; Steelfixer [38.98 h]; Mason [38.98 h]; Surveyor [38.98 h]; Surveyor Helper [38.98 h]; (6*50mm) HDPE ducts [377.45] | 106,381.04 | 0.0207118185753898 | Cons. | Z2 | Telecom | Cons | DCT&MNH | allElec | SUB.C | Ent Rd 01 | TEL |
| B2.1.33 81 26.71 |  | Backfilling & Warrning Tape | 2d | 2026-12-05 | 2026-12-06 | B2.1.33 81 26.70, B2.33 71 00.191, B2.33 71 00.171_R, B2.33 71 00.151_R | 65.32d | 0d | Labor [62.37 h]; Foreman [31.18 h]; Operator [124.74 h]; Surveyor [31.18 h]; Surveyor Helper [31.18 h]; Loader [32 h]; Water Tanker [32 h]; Dump Truck [32 h]; Plate Compactor [32 h]; Roller Compactor [32 h]; (6*50mm) HDPE ducts [125.82] | 35,460.35 | 0.00690393952512995 | Cons. | Z2 | Telecom | Cons | DCT&MNH | allElec | SUB.C | Ent Rd 01 | TEL |
|  | (2*32mm) | **Size (2*32mm) HDPE ducts** |  | 2026-12-02 | 2026-12-08 |  |  |  |  |  |  |  |  |  |  |  |  |  |  |  |
| B2.1.33 81 26.78 |  | Excavation | 1d | 2026-12-02 | 2026-12-02 | B2.1.33 81 26.69 | 60.32d | 0d | Labor [31.18 h]; Foreman [15.59 h]; Operator [31.18 h]; Surveyor [15.59 h]; Surveyor Helper [15.59 h]; Excavator (With Bucket) [16 h]; Water Tanker [16 h]; Dump Truck [16 h]; Plate Compactor [16 h]; (2*32mm) HDPE ducts [8.6] | 1,344.05 | 0.000194889802563824 | Cons. | Z2 | Telecom | Cons | DCT&MNH | allElec | SUB.C | Ent Rd 01 | TEL |
| B2.1.33 81 26.79 |  | HDPE Pipe, Shuttering, Steel Fixing & Conc. Cast | 2d | 2026-12-03 | 2026-12-05 | B2.1.33 81 26.78 | 66.32d | 1d | Labor [46.78 h]; Laboratory Officer [23.39 h]; Carpenter [23.39 h]; Steelfixer [23.39 h]; Mason [23.39 h]; Surveyor [23.39 h]; Surveyor Helper [23.39 h]; (2*32mm) HDPE ducts [25.8] | 4,032.14 | 0.000584669407691468 | Cons. | Z2 | Telecom | Cons | DCT&MNH | allElec | SUB.C | Ent Rd 01 | TEL |
| B2.1.33 81 26.80 |  | Backfilling & Warrning Tape | 2d | 2026-12-07 | 2026-12-08 | B2.1.33 81 26.79, B2.1.33 81 26.71 | 65.32d | 0d | Labor [46.78 h]; Foreman [23.39 h]; Operator [93.55 h]; Surveyor [23.39 h]; Surveyor Helper [23.39 h]; Loader [24 h]; Water Tanker [24 h]; Dump Truck [24 h]; Plate Compactor [24 h]; Roller Compactor [24 h]; (2*32mm) HDPE ducts [8.6] | 1,344.05 | 0.000194889802563824 | Cons. | Z2 | Telecom | Cons | DCT&MNH | allElec | SUB.C | Ent Rd 01 | TEL |
|  | (4*32mm) | **Size (4*32mm) HDPE ducts** |  | 2026-12-03 | 2026-12-08 |  |  |  |  |  |  |  |  |  |  |  |  |  |  |  |
| B2.1.33 81 26.81 |  | Excavation | 1d | 2026-12-03 | 2026-12-03 | B2.1.33 81 26.78 | 65.32d | 0d | Labor [31.18 h]; Foreman [15.59 h]; Operator [31.18 h]; Surveyor [15.59 h]; Surveyor Helper [15.59 h]; Excavator (With Bucket) [16 h]; Water Tanker [16 h]; Dump Truck [16 h]; Plate Compactor [16 h]; (4*32mm) HDPE ducts [5.13] | 1,099.7 | 0.000169743608400202 | Cons. | Z2 | Telecom | Cons | DCT&MNH | allElec | SUB.C | Ent Rd 01 | TEL |
| B2.1.33 81 26.82 |  | HDPE Pipe, Shuttering, Steel Fixing & Conc. Cast | 2d | 2026-12-05 | 2026-12-06 | B2.1.33 81 26.81 | 65.32d | 0d | Labor [62.37 h]; Laboratory Officer [31.18 h]; Carpenter [31.18 h]; Steelfixer [31.18 h]; Mason [31.18 h]; Surveyor [31.18 h]; Surveyor Helper [31.18 h]; (4*32mm) HDPE ducts [15.4] | 3,299.11 | 0.000509230825200604 | Cons. | Z2 | Telecom | Cons | DCT&MNH | allElec | SUB.C | Ent Rd 01 | TEL |
| B2.1.33 81 26.83 |  | Backfilling & Warrning Tape | 2d | 2026-12-07 | 2026-12-08 | B2.1.33 81 26.82 | 65.32d | 0d | Labor [62.37 h]; Foreman [31.18 h]; Operator [124.74 h]; Surveyor [31.18 h]; Surveyor Helper [31.18 h]; Loader [32 h]; Water Tanker [32 h]; Dump Truck [32 h]; Plate Compactor [32 h]; Roller Compactor [32 h]; (4*32mm) HDPE ducts [5.13] | 1,099.7 | 0.000169743608400202 | Cons. | Z2 | Telecom | Cons | DCT&MNH | allElec | SUB.C | Ent Rd 01 | TEL |
|  | Manholes | **Manholes** |  | 2026-12-03 | 2026-12-10 |  |  |  |  |  |  |  |  |  |  |  |  |  |  |  |
|  | Manhole Type 2 | **Manhole Type 2** |  | 2026-12-03 | 2026-12-10 |  |  |  |  |  |  |  |  |  |  |  |  |  |  |  |
| B2.31 23 00.607 |  | Excavation | 1d | 2026-12-03 | 2026-12-03 | B2.1.33 81 26.69, B2.1.33 81 26.78 | 60.32d | 0d | Labor [31.18 h]; Foreman [15.59 h]; Operator [31.18 h]; Surveyor [15.59 h]; Surveyor Helper [15.59 h]; Excavator (With Bucket) [16 h]; Water Tanker [16 h]; Dump Truck [16 h]; Plate Compactor [16 h]; Manhole Type 2 [0.52] | 3,287.69 | 0.000634453248743172 | Cons. | Z2 | Telecom | Cons | DCT&MNH | allElec | SUB.C | Ent Rd 01 | TEL |
| B2.33 71 00.222 |  | Manhole Installation | 1d | 2026-12-05 | 2026-12-05 | B2.31 23 00.607 | 68.32d | 3d | Labor [31.18 h]; Laboratory Officer [15.59 h]; Carpenter [15.59 h]; Steelfixer [15.59 h]; Mason [15.59 h]; Surveyor [15.59 h]; Surveyor Helper [15.59 h]; Manhole Type 2 [1.56] | 9,863.09 | 0.00190336462403523 | Cons. | Z2 | Telecom | Cons | DCT&MNH | allElec | SUB.C | Ent Rd 01 | TEL |
| B2.33 71 00.223 |  | Backfilling & Warrning Tape | 2d | 2026-12-09 | 2026-12-10 | B2.33 71 00.222, B2.1.33 81 26.80, B2.1.33 81 26.83 | 65.32d | 1d | Labor [46.78 h]; Foreman [23.39 h]; Operator [93.55 h]; Surveyor [23.39 h]; Surveyor Helper [23.39 h]; Loader [24 h]; Water Tanker [24 h]; Dump Truck [24 h]; Plate Compactor [24 h]; Roller Compactor [24 h]; Manhole Type 2 [0.52] | 3,287.69 | 0.000634453248743172 | Cons. | Z2 | Telecom | Cons | DCT&MNH | allElec | SUB.C | Ent Rd 01 | TEL |
|  | Crossing Ducts | **Road Crossing Ducts** |  | 2026-12-05 | 2026-12-12 |  |  |  |  |  |  |  |  |  |  |  |  |  |  |  |
|  | 1 | **Size (6*50mm) HDPE** |  | 2026-12-05 | 2026-12-09 |  |  |  |  |  |  |  |  |  |  |  |  |  |  |  |
| B2.31 23 00.608 |  | Excavation | 1d | 2026-12-05 | 2026-12-05 | B2.31 23 00.607 | 60.32d | 0d | Labor [31.18 h]; Foreman [15.59 h]; Operator [31.18 h]; Surveyor [15.59 h]; Surveyor Helper [15.59 h]; Excavator (With Bucket) [16 h]; Water Tanker [16 h]; Dump Truck [16 h]; Plate Compactor [16 h]; Road crossing ducts, (6*50mm) HDPE [7.13] | 2,221.93 | 0.000381434848303997 | Cons. | Z2 | Telecom | Cons | DCT&MNH | allElec | SUB.C | Ent Rd 01 | TEL |
| B2.33 71 00.224 |  | Shuttering, Steel Fixing Incl. UPVC Pipe & Conc. Cast | 2d | 2026-12-06 | 2026-12-07 | B2.31 23 00.608 | 68.32d | 0d | Labor [62.37 h]; Laboratory Officer [31.18 h]; Carpenter [31.18 h]; Steelfixer [31.18 h]; Mason [31.18 h]; Surveyor [31.18 h]; Surveyor Helper [31.18 h]; Road crossing ducts, (6*50mm) HDPE [21.37] | 6,660.61 | 0.00114341541939146 | Cons. | Z2 | Telecom | Cons | DCT&MNH | allElec | SUB.C | Ent Rd 01 | TEL |
| B2.33 71 00.225 |  | Backfilling & Warrning Tape | 2d | 2026-12-08 | 2026-12-09 | B2.33 71 00.224, B2.1.33 81 26.176 | 68.32d | 7d | Labor [46.78 h]; Foreman [23.39 h]; Operator [93.55 h]; Surveyor [23.39 h]; Surveyor Helper [23.39 h]; Loader [24 h]; Water Tanker [24 h]; Dump Truck [24 h]; Plate Compactor [24 h]; Roller Compactor [24 h]; Road crossing ducts, (6*50mm) HDPE [7.13] | 2,221.93 | 0.000381434848303997 | Cons. | Z2 | Telecom | Cons | DCT&MNH | allElec | SUB.C | Ent Rd 01 | TEL |

| ID | WBS | Activity | Duration | Start | Finish | Predecessors | Complete | Total float | Free float | Resources | Cost | Actual cost | Weight % | DMM2 Weekly Progress | DMM2 Zones | Networks & Stations | DMM2 Phases | Networks Components | All Electrical Scope | Subcontractors works | Dmm2 Roads | Yellow Sheet |
| --- | --- | --- | --- | --- | --- | --- | --- | --- | --- | --- | --- | --- | --- | --- | --- | --- | --- | --- | --- | --- | --- | --- |
|  | 2 | **Size (2*32mm) HDPE** |  | 2026-12-06 | 2026-12-12 |  |  |  |  |  |  |  |  |  |  |  |  |  |  |  |  |  |
| B2.31 23 00.609 |  | Excavation | 1d | 2026-12-06 | 2026-12-06 | B2.31 23 00.608 |  | 60.32d | 0d | Labor [31.18 h]; Foreman [15.59 h]; Operator [31.18 h]; Surveyor [15.59 h]; Surveyor Helper [15.59 h]; Excavator (With Bucket) [16 h]; Water Tanker [16 h]; Dump Truck [16 h]; Plate Compactor [16 h]; Road crossing ducts, (2*32mm) HDPE [3.35] | 547.76 |  | 7.49712936569771E-005 | Cons. | Z2 | Telecom | Cons | DCT&MNH | allElec | SUB.C | Ent Rd 01 | TEL |
| B2.33 71 00.226 |  | Shuttering, Steel Fixing Incl. UPVC Pipe & Conc. Cast | 2d | 2026-12-07 | 2026-12-08 | B2.31 23 00.609 |  | 67.32d | 1d | Labor [46.78 h]; Laboratory Officer [23.39 h]; Carpenter [23.39 h]; Steelfixer [23.39 h]; Mason [23.39 h]; Surveyor [23.39 h]; Surveyor Helper [23.39 h]; Road crossing ducts, (2*32mm) HDPE [10.04] | 1,639.89 |  | 0.000224448220761883 | Cons. | Z2 | Telecom | Cons | DCT&MNH | allElec | SUB.C | Ent Rd 01 | TEL |
| B2.33 71 00.227 |  | Backfilling & Warrning Tape | 2d | 2026-12-10 | 2026-12-12 | B2.33 71 00.226, B2.1.33 81 26.68 |  | 66.32d | 5d | Labor [46.78 h]; Foreman [23.39 h]; Operator [93.55 h]; Surveyor [23.39 h]; Surveyor Helper [23.39 h]; Loader [24 h]; Water Tanker [24 h]; Dump Truck [24 h]; Plate Compactor [24 h]; Roller Compactor [24 h]; Road crossing ducts, (2*32mm) HDPE [3.35] | 547.76 |  | 7.49712936569771E-005 | Cons. | Z2 | Telecom | Cons | DCT&MNH | allElec | SUB.C | Ent Rd 01 | TEL |
|  | Earth & Road Works | **Earth & Road Works** |  | 2025-12-03 | 2026-12-21 |  |  |  |  |  |  |  |  |  |  |  |  |  |  |  |  |  |
|  | Earth Works | **Earth Works** |  | 2025-12-03 | 2026-03-08 |  |  |  |  |  |  |  |  |  |  |  |  |  |  |  |  |  |
| B1.2.31 23 16.01.4 |  | Roadway Excavation | 66.1d | 2025-12-03 A | 2026-02-18 A | DMM2-Eng-MS-78 | 100% |  |  | Roadway Excavation for cuttings (all types of soil) [16303.8]; Labor [28.35 h]; Foreman [14.17 h]; Operator [28.35 h]; Surveyor [14.17 h]; Surveyor Helper [14.17 h]; Excavator (With Bucket) [16 h]; Water Tanker [16 h]; Dump Truck [16 h] | 243,350.43 | 243,350.43 | 2.97160785696866E-005 | Cons. | Z2 | Roads | Cons |  |  |  | Ent Rd 01 |  |
| B1.2.31 23 23.01.4 |  | Embankment Backfiling | 74.52d | 2025-12-06 A | 2026-03-08 A | B1.2.31 23 16.01.4 | 100% |  |  | Embankment backfiling [9820.03]; Labor [28.35 h]; Foreman [14.17 h]; Operator [28.35 h]; Surveyor [14.17 h]; Surveyor Helper [14.17 h]; Loader [16 h]; Water Tanker [16 h]; Dump Truck [16 h]; Plate Compactor [16 h]; Roller Compactor [16 h] | 267,281.66 | 267,281.66 | 0.0354732690715688 | Cons. | Z2 | Roads | Cons |  |  |  | Ent Rd 01 |  |
|  | Earth Layers | **Earth Layers** |  | 2026-02-25 | 2026-10-22 |  |  |  |  |  |  |  |  |  |  |  |  |  |  |  |  |  |
| B1.2.32 11 13.01.4 |  | Subgrade (65.00% Completed) | 161.23d | 2026-02-25 A | 2026-09-15 A | B1.2.31 23 23.01.4 | 100% |  |  | Subgrade [720.19]; Labor [30.41 h]; Foreman [15.2 h]; Operator [30.41 h]; Surveyor [15.2 h]; Surveyor Helper [15.2 h]; Grader [15.6 h]; Loader [15.6 h]; Water Tanker [15.6 h]; Dump Truck [15.6 h]; Plate Compactor [15.6 h]; Roller Compactor [15.6 h] | 21,499.13 | 21,499.13 | 0.0193955944337115 | Cons. | Z2 | Roads | Cons | Roads |  |  | Ent Rd 01 | Sub |
| B1.2.32 11 23.01.4 |  | Aggregate Base Course (59.00% Completed) | 84d | 2026-06-10 A | 2026-09-15 A | B1.2.32 11 13.01.4 FF | 100% |  |  | Aggregate base course [435.81]; Labor [27.6 h]; Foreman [13.8 h]; Operator [27.6 h]; Surveyor [13.8 h]; Surveyor Helper [13.8 h]; Grader [14.16 h]; Loader [14.16 h]; Water Tanker [14.16 h]; Dump Truck [14.16 h]; Plate Compactor [14.16 h]; Roller Compactor [14.16 h] | 37,881.11 | 37,881.11 | 0.0365560206545797 | Cons. | Z2 | Roads | Cons | Roads |  |  | Ent Rd 01 | Agg |
| B1.2.32 11 13.01.4_R |  | Subgrade(Rem) | 1.05d | 2026-10-21 | 2026-10-22 | B1.2.31 23 23.01.4, B1.2.32 11 13.01.4 |  | 50.27d | 0.18d | Subgrade [387.79]; Labor [16.37 h]; Foreman [8.19 h]; Operator [16.37 h]; Surveyor [8.19 h]; Surveyor Helper [8.19 h]; Grader [8.4 h]; Loader [8.4 h]; Water Tanker [8.4 h]; Dump Truck [8.4 h]; Plate Compactor [8.4 h]; Roller Compactor [8.4 h] | 11,576.45 |  | 0.0193955944337115 | Cons. | Z2 | Roads | Cons | Roads |  |  | Ent Rd 01 | Sub |
| B1.2.32 11 23.01.4_R |  | Aggregate Base Course(Rem) | 1.23d | 2026-10-21 | 2026-10-22 | B1.2.32 11 13.01.4_R FF, B1.2.32 11 23.01.4 |  | 50.09d | 2.77d | Aggregate base course [302.85]; Labor [19.18 h]; Foreman [9.59 h]; Operator [19.18 h]; Surveyor [9.59 h]; Surveyor Helper [9.59 h]; Grader [9.84 h]; Loader [9.84 h]; Water Tanker [9.84 h]; Dump Truck [9.84 h]; Plate Compactor [9.84 h]; Roller Compactor [9.84 h] | 26,324.16 |  | 0.0365560206545797 | Cons. | Z2 | Roads | Cons | Roads |  |  | Ent Rd 01 | Agg |
|  | Interlock | **Interlock** |  | 2026-12-06 | 2026-12-07 |  |  |  |  |  |  |  |  |  |  |  |  |  |  |  |  |  |
| B1.2.32 14 13.13.4 |  | 60mm thick - Interlocking Block Pavers | 2d | 2026-12-06 | 2026-12-07 | B1.2.32 11 23.01.4_R, B2.33 71 16.42 |  | 69.32d | 0d | 60mm thick - Interlocking block pavers for sidewalks and medians [263.7]; Labor [46.78 h]; Foreman [23.39 h]; Mason [23.39 h]; Operator [46.78 h]; JCB [24 h] | 17,596.39 |  | 0.00976905047595733 | Cons. | Z2 | Roads | Cons | Roads |  |  | Ent Rd 01 |  |
|  | Curbstone | **Curbstone** |  | 2026-10-29 | 2026-11-15 |  |  |  |  |  |  |  |  |  |  |  |  |  |  |  |  |  |
|  | Pre Install | **Pre-Installation** |  | 2026-10-29 | 2026-11-05 |  |  |  |  |  |  |  |  |  |  |  |  |  |  |  |  |  |
| B2.31 23 00.91 |  | Excavation | 2d | 2026-10-29 | 2026-11-01 | B2.31 23 00.161 SS |  | 28d | 0d | Curb Stone, Type K1 [62.2]; Dropped Curb, Type K3 [9.03]; Edge Curb, Type K4 [31.25]; Heel Curb, Type K5 [25.08]; Transition Curb [3.94]; Labor [46.78 h]; Foreman [23.39 h]; Operator [46.78 h]; Surveyor [23.39 h]; Surveyor Helper [23.39 h]; JCB [24 h]; Water Tanker [24 h]; Dump Truck [24 h]; Plate Compactor [24 h] | 9,711.67 |  | 0.00553539211039404 | Cons. | Z2 | Roads | Cons | Roads |  |  | Ent Rd 01 |  |
| B1.2.32 14 13.13.24 |  | PCC | 2d | 2026-11-01 | 2026-11-03 | B2.31 23 00.91 |  | 28d | 0d | Curb Stone, Type K1 [62.2]; Dropped Curb, Type K3 [9.03]; Edge Curb, Type K4 [31.25]; Heel Curb, Type K5 [25.08]; Transition Curb [3.94]; Labor [31.18 h]; Mason [15.59 h]; Surveyor [15.59 h]; Surveyor Helper [15.59 h] | 9,711.67 |  | 0.00553539211039404 | Cons. | Z2 | Roads | Cons | Roads |  |  | Ent Rd 01 |  |
| 32 16 13.004 |  | Haunching | 2d | 2026-11-03 | 2026-11-05 | B1.2.32 14 13.13.24 |  | 28d | 0d | Curb Stone, Type K1 [62.2]; Dropped Curb, Type K3 [9.03]; Edge Curb, Type K4 [31.25]; Heel Curb, Type K5 [25.08]; Transition Curb [3.94]; Labor [46.78 h]; Carpenter [23.39 h]; Mason [23.39 h]; Surveyor [23.39 h]; Surveyor Helper [23.39 h] | 9,711.67 |  | 0.00553539211039404 | Cons. | Z2 | Roads | Cons | Roads |  |  | Ent Rd 01 |  |
|  | Installation | **Installation** |  | 2026-11-05 | 2026-11-12 |  |  |  |  |  |  |  |  |  |  |  |  |  |  |  |  |  |
| B1.2.32 16.13.01.4 |  | Curb Stone, Type K1 | 2d | 2026-11-05 | 2026-11-08 | 32 16 13.004 |  | 28d | 0d | Curb Stone, Type K1 [186.61]; Labor [46.78 h]; Foreman [23.39 h]; Mason [23.39 h]; Operator [46.78 h]; Surveyor [23.39 h]; Surveyor Helper [23.39 h]; JCB [24 h] | 14,090.47 |  | 0.00831075529656916 | Cons. | Z2 | Roads | Cons | Roads |  |  | Ent Rd 01 |  |
| B1.2.32 16.13.03.4 |  | Edge Curb, Type K4 | 2d | 2026-11-08 | 2026-11-10 | 32 16 13.004, B1.2.32 16.13.01.4 |  | 28d | 0d | Edge Curb, Type K4 [93.76]; Labor [31.18 h]; Foreman [15.59 h]; Mason [15.59 h]; Operator [31.18 h]; Surveyor [15.59 h]; Surveyor Helper [15.59 h]; JCB [16 h] | 7,079.35 |  | 0.00389866828792607 | Cons. | Z2 | Roads | Cons | Roads |  |  | Ent Rd 01 |  |
| B1.2.32 16.13.044 |  | Heel Curb, Type K5 | 2d | 2026-11-10 | 2026-11-12 | 32 16 13.004, B1.2.32 16.13.03.4 |  | 28d | 0d | Heel Curb, Type K5 [75.26]; Labor [31.18 h]; Foreman [15.59 h]; Mason [15.59 h]; Operator [31.18 h]; Surveyor [15.59 h]; Surveyor Helper [15.59 h]; JCB [16 h] | 4,823.47 |  | 0.00253864937617656 | Cons. | Z2 | Roads | Cons | Roads |  |  | Ent Rd 01 |  |

| ID | WBS | Activity | Duration | Start | Finish | Predecessors | Total float | Free float | Resources | Cost | Weight % | DMM2 Weekly Progress | DMM2 Zones | Networks & Stations | DMM2 Phases | Networks Components | Dmm2 Roads | Yellow Sheet |
| --- | --- | --- | --- | --- | --- | --- | --- | --- | --- | --- | --- | --- | --- | --- | --- | --- | --- | --- |
|  | Finishing | **Finishing** |  | 2026-11-12 | 2026-11-15 |  |  |  |  |  |  |  |  |  |  |  |  |  |
| 32 16 13.04 |  | Finishing, Fareface | 2d | 2026-11-12 | 2026-11-15 | B1.2.32 16.13.01.4, B1.2.32 16.13.03.4, B1.2.32 16.13.044, B1.2.10 14 14.01.18, B1.2.10 14 14.01.1 | 28d | 2d | Curb Stone, Type K1 [41.47]; Dropped Curb, Type K3 [6.02]; Edge Curb, Type K4 [20.78]; Heel Curb, Type K5 [16.73]; Transition Curb [3.94]; Labor [31.18 h]; Mason [15.59 h] | 6,576.81 | 0.00375493021721599 | Cons. | Z2 | Roads | Cons | Roads | Ent Rd 01 |  |
|  | Asphalt Layers | **Asphalt Layers** |  | 2026-10-26 | 2026-11-02 |  |  |  |  |  |  |  |  |  |  |  |  |  |
| B1.2.32 11 26.01.4 |  | Bituminous Base Course including Prime Coat (MC1) and tack coat (RC2) | 2d | 2026-10-26 | 2026-10-27 | B1.2.32 11 23.01.4_R, B1.2.32 11 26.01.5, B1.1.31 23 23.112 | 47.32d | 0d | Bituminous base course(Grading I - Class A) [505.98]; Labor [31.18 h]; Foreman [15.59 h]; Operator [31.18 h]; Surveyor [15.59 h]; Surveyor Helper [15.59 h]; Dump Truck [16 h]; Roller Compactor [16 h]; MC1/RC2 Sprayer [16 h] | 278,101.76 | 0.153448873486934 | Cons. | Z2 | Roads | Cons | Roads | Ent Rd 01 | BBC |
| B1.2.32 12 16.01.4 |  | Bituminous concrete Wearing Course, including tack coat (RC2) | 5d | 2026-10-28 | 2026-11-02 | B1.2.32 11 26.01.4 | 47.32d | 0d | Bituminous concrete wearing course, after compaction(Grading I - Class A), including tack coat (RC2) [185.19]; Labor [31.18 h]; Foreman [15.59 h]; Operator [31.18 h]; Surveyor [15.59 h]; Surveyor Helper [15.59 h]; Dump Truck [16 h]; Roller Compactor [16 h]; MC1/RC2 Sprayer [16 h] | 109,262.33 | 0.0602418004922887 | Cons. | Z2 | Roads | Cons | Roads | Ent Rd 01 | BWC |
|  | Pavement Marking | **Pavement Marking** |  | 2026-11-03 | 2026-11-04 |  |  |  |  |  |  |  |  |  |  |  |  |  |
| B1.2.32 17 23.01.4 |  | Retroreflective Thermoplastic White Traffic lines | 2d | 2026-11-03 | 2026-11-04 | B1.2.32 12 16.01.4 | 97.32d | 28d | Retroreflective Thermoplastic White Traffic lines [62.77]; Labor [46.78 h]; Mason [23.39 h]; Road Marking Machine [24 h] | 1,873.94 | 0.000942122413561118 | Cons. | Z2 | Roads | Cons | Roads | Ent Rd 01 |  |
| B1.2.32 17 23.02.4 |  | Retroreflective Thermoplastic Yellow, Traffic lines | 2d | 2026-11-03 | 2026-11-04 | B1.2.32 12 16.01.4 | 97.32d | 28d | Retroreflective Thermoplastic Yellow, Traffic lines [30.09]; Labor [31.18 h]; Mason [15.59 h]; Road Marking Machine [16 h] | 898.16 | 0.000451547887298998 | Cons. | Z2 | Roads | Cons | Roads | Ent Rd 01 |  |
|  | Traffic Signs | **Traffic Signs** |  | 2026-10-29 | 2026-12-21 |  |  |  |  |  |  |  |  |  |  |  |  |  |
|  | Pre Install | **Pre-Installation** |  | 2026-10-29 | 2026-11-28 |  |  |  |  |  |  |  |  |  |  |  |  |  |
| B2.31 23 00.101 |  | Excavation | 2d | 2026-10-29 | 2026-11-01 | B2.31 23 00.91 SS | 28d | 0d | Traffic signs, ground mounted, 1 Sheet Alumenium, (breakaway) Single post [0.39]; Ground mounted, 1 Sheet Alumenium powder coated UV printed, Single post [0.39]; Labor [31.18 h]; Foreman [15.59 h]; Operator [31.18 h]; Surveyor [15.59 h]; Surveyor Helper [15.59 h]; JCB [16 h]; Water Tanker [16 h]; Dump Truck [16 h]; Plate Compactor [16 h] | 870.43 | 0.000437610700708045 | Cons. | Z2 | Roads | Cons | Roads | Ent Rd 01 |  |
| 10 14 53.04 |  | Foundation | 2d | 2026-11-25 | 2026-11-28 | B2.31 23 00.101, B7.31 32 19.23.3 | 28d | 0d | Traffic signs, ground mounted, 1 Sheet Alumenium, (breakaway) Single post [0.39]; Ground mounted, 1 Sheet Alumenium powder coated UV printed, Single post [0.39]; Labor [31.18 h]; Carpenter [15.59 h]; Steelfixer [15.59 h]; Mason [15.59 h]; Surveyor [15.59 h]; Surveyor Helper [15.59 h] | 870.43 | 0.000437610700708045 | Cons. | Z2 | Roads | Cons | Roads | Ent Rd 01 |  |
|  | Installation | **Installation** |  | 2026-12-08 | 2026-12-21 |  |  |  |  |  |  |  |  |  |  |  |  |  |
| B1.2.10 14 53.014 |  | 1 Sheet Alumenium, Single post | 1d | 2026-12-08 | 2026-12-08 | B1.2.32 14 13.13.4, B1.2.32 17 23.02.4, B1.2.32 17 23.01.4 | 69.32d | 10.32d | Traffic signs, ground mounted, 1 Sheet Alumenium, (breakaway) Single post [1.42]; Labor [31.18 h]; Foreman [15.59 h]; Operator [31.18 h]; JCB [16 h] | 1,584.64 | 0.000796675177126289 | Cons. | Z2 | Roads | Cons | Roads | Ent Rd 01 |  |
| B1.2.10 14 14.01.4 |  | Ground mounted, 1 Sheet Alumenium, Single post | 1d | 2026-12-20 | 2026-12-21 | B1.2.32 14 13.13.4, B1.2.32 17 23.02.4, B1.2.32 17 23.01.4, B1.2.10 14 14.026 | 59d | 0d | Ground mounted, 1 Sheet Alumenium powder coated UV printed, Single post [0.79]; Labor [31.18 h]; Foreman [15.59 h]; Operator [31.18 h]; JCB [16 h] | 879.36 | 0.000442099411754828 | Cons. | Z2 | Roads | Cons | Roads | Ent Rd 01 |  |
|  | Landscape | **Landscape** |  | 2026-10-22 | 2027-01-18 |  |  |  |  |  |  |  |  |  |  |  |  |  |
|  | Fences | **Fences** |  | 2026-11-01 | 2027-01-18 |  |  |  |  |  |  |  |  |  |  |  |  |  |
|  | (ZATCA HCIS) | **Steel fence (ZATCA HCIS)** |  | 2026-11-01 | 2027-01-18 |  |  |  |  |  |  |  |  |  |  |  |  |  |
| B7.32 93 43.04.14 |  | Earthwork | 5d | 2026-11-01 | 2026-11-07 | B2.31 23 00.101 | 28d | 0d | Labor [62.37 h]; Foreman [31.18 h]; Operator [62.37 h]; Surveyor [31.18 h]; Surveyor Helper [31.18 h]; Excavator (With Bucket) [32 h]; Water Tanker [32 h]; Dump Truck [32 h]; Plate Compactor [32 h]; Steel fence (ZATCA HCIS) [116.81] | 25,743.45 | 0.0145109845928078 | Cons. | Z2 | Landscp | Cons | Fncs&Gt | Ent Rd 01 | ZTK.Fns |
| B7.32 93 43.04.50 |  | Foundation | 6d | 2026-11-21 | 2026-11-28 | B7.32 93 43.04.14, 10 14 53.04 FF | 28d | 0d | Labor [62.37 h]; Laboratory Officer [31.18 h]; Carpenter [31.18 h]; Steelfixer [31.18 h]; Mason [31.18 h]; Surveyor [31.18 h]; Surveyor Helper [31.18 h]; Steel fence (ZATCA HCIS) [116.81] | 25,743.45 | 0.0145109845928078 | Cons. | Z2 | Landscp | Cons | Fncs&Gt | Ent Rd 01 | ZTK.Fns |
| B7.32 93 43.04.56 |  | Fence Installation | 5d | 2027-01-12 | 2027-01-18 | B7.32 93 43.04.50, DMM2-Proc-Delv-7335, DMM2-Proc-Delv-7328, B7.32 93 43.04.20 | 6d |  | Labor [155.92 h]; Foreman [77.96 h]; Welder [77.96 h]; Mason [77.96 h]; Operator [155.92 h]; Boom Truck [80 h]; Welding Machine [80 h]; Steel fence (ZATCA HCIS) [545.13] | 120,135.44 | 0.0677175587789433 | Cons. | Z2 | Landscp | Cons | Fncs&Gt | Ent Rd 01 | ZTK.Fns |
|  | (MODON) fence | **Steel fence (MODON)** |  | 2026-11-07 | 2026-12-05 |  |  |  |  |  |  |  |  |  |  |  |  |  |
| B7.32 93 43.04.12 |  | Earthwork | 6d | 2026-11-07 | 2026-11-14 | B7.32 93 43.04.14 | 28d | 0d | Labor [93.55 h]; Foreman [46.78 h]; Operator [93.55 h]; Surveyor [46.78 h]; Surveyor Helper [46.78 h]; Excavator (With Bucket) [48 h]; Water Tanker [48 h]; Dump Truck [48 h]; Plate Compactor [48 h]; Steel fence (MODON) [93.38] | 70,343.16 | 0.0387026561597213 | Cons. | Z2 | Landscp | Cons | Fncs&Gt | Ent Rd 01 | Mod.Fns |
| B7.32 93 43.04.48 |  | Foundation | 3d | 2026-11-28 | 2026-12-01 | B7.32 93 43.04.12, B7.32 93 43.04.50, B7.31 32 19.23.3 | 28d | 0d | Labor [93.55 h]; Laboratory Officer [46.78 h]; Carpenter [46.78 h]; Steelfixer [46.78 h]; Mason [46.78 h]; Surveyor [46.78 h]; Surveyor Helper [46.78 h]; Steel fence (MODON) [93.37] | 70,336.27 | 0.0386988688364846 | Cons. | Z2 | Landscp | Cons | Fncs&Gt | Ent Rd 01 | Mod.Fns |
| B7.32 93 43.04.54 |  | Fence Installation | 3d | 2026-12-01 | 2026-12-05 | B7.32 93 43.04.48, DMM2-Proc-Delv-7336 | 42d |  | Labor [109.15 h]; Foreman [54.57 h]; Welder [54.57 h]; Mason [54.57 h]; Operator [109.15 h]; Boom Truck [56 h]; Welding Machine [56 h]; Steel fence (MODON) [435.76] | 328,263.48 | 0.180609870529875 | Cons. | Z2 | Landscp | Cons | Fncs&Gt | Ent Rd 01 | Mod.Fns |

| ID | WBS | Activity | Duration | Start | Finish | Predecessors | Complete | Total float | Free float | Resources | Cost | Actual cost | Weight % | DMM2 Weekly Progress | DMM2 Zones | Networks & Stations | DMM2 Phases | Networks Components | Dmm2 Roads | Yellow Sheet | UNASCO | Subcontractors works |
| --- | --- | --- | --- | --- | --- | --- | --- | --- | --- | --- | --- | --- | --- | --- | --- | --- | --- | --- | --- | --- | --- | --- |
|  | Gates | **Gates** |  | 2026-11-14 | 2026-12-26 |  |  |  |  |  |  |  |  |  |  |  |  |  |  |  |  |  |
|  | Size (4.35x 2.7)m | **Size (4.35x 2.7)m** |  | 2026-11-14 | 2026-12-26 |  |  |  |  |  |  |  |  |  |  |  |  |  |  |  |  |  |
| B7.32 93 43.04.10 |  | Earthwork | 5d | 2026-11-14 | 2026-11-19 | B7.32 93 43.04.12, DMM2-Proc-Delv-7338 |  | 28d | 0d | Labor [31.18 h]; Foreman [15.59 h]; Operator [31.18 h]; Surveyor [15.59 h]; Surveyor Helper [15.59 h]; Excavator (With Bucket) [16 h]; Water Tanker [16 h]; Dump Truck [16 h]; Plate Compactor [16 h]; Size (4.35x 2.7)m [0.38] | 5,172.43 |  | 0.00260043861646363 | Cons. | Z2 | Landscp | Cons | Fncs&Gt | Ent Rd 01 | Mod.Fns |  |  |
| B7.32 93 43.04.46 |  | Foundation | 3d | 2026-12-01 | 2026-12-05 | B7.32 93 43.04.10, B7.32 93 43.04.48, B7.31 32 19.23.3 |  | 28d | 15d | Labor [31.18 h]; Laboratory Officer [15.59 h]; Carpenter [15.59 h]; Steelfixer [15.59 h]; Mason [15.59 h]; Surveyor [15.59 h]; Surveyor Helper [15.59 h]; Size (4.35x 2.7)m [0.38] | 5,172.43 |  | 0.00260043861646363 | Cons. | Z2 | Landscp | Cons | Fncs&Gt | Ent Rd 01 | Mod.Fns |  |  |
| B7.32 93 43.04.52 |  | Gate Installation | 3d | 2026-12-22 | 2026-12-26 | B7.32 93 43.04.46, DMM2-Proc-Delv-7337, B7.32 93 43.02.18, B7.32 93 43.02.24 |  | 13d | 0d | Labor [31.18 h]; Foreman [15.59 h]; Welder [15.59 h]; Mason [15.59 h]; Operator [31.18 h]; Boom Truck [16 h]; Size (4.35x 2.7)m [1.74] | 23,684.3 |  | 0.0119072715595966 | Cons. | Z2 | Landscp | Cons | Fncs&Gt | Ent Rd 01 | Mod.Fns |  |  |
|  | Geotextile | **Geotextile** |  | 2026-10-22 | 2026-11-25 |  |  |  |  |  |  |  |  |  |  |  |  |  |  |  |  |  |
| B7.31 32 19.23.2 |  | Geotextile to protect trees planting soil | 5d | 2026-10-22 | 2026-10-28 | DMM2-Proc-Delv-7330 |  | 68.82d | 0d | Labor [77.96 h]; Foreman [38.98 h]; Landscape Specialist [38.98 h]; Geotextile to protect trees planting soil [2516.62] | 17,676.73 |  | 0.00651528995378157 | Cons. | Z2 | Landscp | Cons | Lndscp | Ent Rd 01 | Lndscp |  |  |
| B7.31 32 19.23.3 |  | Geotextile below gravel bed | 5d | 2026-11-19 | 2026-11-25 | B7.32 93 43.04.10, DMM2-Proc-Delv-7330 |  | 28d | 0d | Labor [77.96 h]; Foreman [38.98 h]; Landscape Specialist [38.98 h]; Geotextile below gravel bed [5410.69] | 38,004.7 |  | 0.0210184313305733 | Cons. | Z2 | Landscp | Cons | Lndscp | Ent Rd 01 | Lndscp |  |  |
|  | Trees | **Trees** |  | 2026-10-25 | 2026-11-05 |  |  |  |  |  |  |  |  |  |  |  |  |  |  |  |  |  |
| B7.32 93 43.01 |  | Azadirachta indica | 3d | 2026-10-25 | 2026-10-28 | B7.31 32 19.23.2 FF, DMM2-Proc-Delv-7333 FF |  | 68.82d | 4.5d | Labor [124.74 h]; Operator [124.74 h]; Surveyor [62.37 h]; Surveyor Helper [62.37 h]; JCB [64 h]; Water Tanker [64 h]; Landscape Specialist [62.37 h]; Azadirachta indica [21] | 18,253.67 |  | 0.00917702426416789 | Cons. | Z2 | Landscp | Cons | Lndscp | Ent Rd 01 | Lndscp |  |  |
| B7.32 93 43.04 |  | Delonix Regia | 3d | 2026-11-03 | 2026-11-05 | B1.2.32 11 13.01.4_R, B7.32 93 43.01, B1.2.32 12 16.01.4, DMM2-Proc-Delv-7333 |  | 64.32d | 0d | Labor [77.96 h]; Operator [77.96 h]; Surveyor [38.98 h]; Surveyor Helper [38.98 h]; JCB [40 h]; Water Tanker [40 h]; Landscape Specialist [38.98 h]; Delonix Regia [14] | 19,470.55 |  | 0.00978881180475334 | Cons. | Z2 | Landscp | Cons | Lndscp | Ent Rd 01 | Lndscp |  |  |
| B7.32 93 43.06 |  | Schinus Molle | 3d | 2026-11-03 | 2026-11-05 | B1.2.32 11 13.01.4_R, B7.32 93 43.04 FF, B1.2.32 12 16.01.4, DMM2-Proc-Delv-7333 |  | 64.32d | 61.32d | Labor [31.18 h]; Operator [31.18 h]; Surveyor [15.59 h]; Surveyor Helper [15.59 h]; JCB [16 h]; Water Tanker [16 h]; Landscape Specialist [15.59 h]; Schinus Molle [12] | 27,815.11 |  | 0.0139840369739702 | Cons. | Z2 | Landscp | Cons | Lndscp | Ent Rd 01 | Lndscp |  |  |
|  | Entrance Road 02 | **Entrance Road 02** |  | 2025-11-28 | 2027-01-23 |  |  |  |  |  |  |  |  |  |  |  |  |  |  |  |  |  |
|  | Wet Networks | **Wet Networks** |  | 2026-03-13 | 2026-12-10 |  |  |  |  |  |  |  |  |  |  |  |  |  |  |  |  |  |
|  | Sewerage Network | **Sewerage Network** |  | 2026-03-22 | 2026-12-01 |  |  |  |  |  |  |  |  |  |  |  |  |  |  |  |  |  |
|  | GRP | **GRP Pipes** |  | 2026-03-24 | 2026-10-12 |  |  |  |  |  |  |  |  |  |  |  |  |  |  |  |  |  |
|  | 200 | **?200** |  | 2026-03-24 | 2026-10-12 |  |  |  |  |  |  |  |  |  |  |  |  |  |  |  |  |  |
|  | 3 | **Depth From 1.5m to 2.5m** |  | 2026-03-24 | 2026-10-12 |  |  |  |  |  |  |  |  |  |  |  |  |  |  |  |  |  |
| B5.33 31 00.02.02 1 |  | Excavation | 6.76d | 2026-03-24 A | 2026-04-01 A | B5.33 31 00.01.2169, B1.1.31 23 23.62 | 100% |  |  | Labor [56.7 h]; Foreman [28.35 h]; Operator [56.7 h]; Surveyor [28.35 h]; Surveyor Helper [28.35 h]; Excavator (With Bucket) [32 h]; Water Tanker [32 h]; Dump Truck [32 h]; Plate Compactor [32 h]; Sew Dia. 200mm Depth: 1.51m - 2.5m [90.91] | 30,729.97 | 30,729.97 | 0.00549155681141213 | Cons. | Z2 | Sew | Cons | GRPs | Ent Rd 02 | Sew | CS.UNSC | SUB.C |
| B5.33 31 00.02.02 2 |  | Sand Bedding | 7.58d | 2026-03-29 A | 2026-04-07 A | B5.33 31 00.02.02 1 | 100% |  |  | Labor [28.35 h]; Foreman [14.17 h]; Operator [56.7 h]; Surveyor [14.17 h]; Surveyor Helper [14.17 h]; Loader [16 h]; Water Tanker [16 h]; Dump Truck [16 h]; Plate Compactor [16 h]; Sew Dia. 200mm Depth: 1.51m - 2.5m [22.73] | 7,683.84 | 7,683.84 | 0.00137313027207214 | Cons. | Z2 | Sew | Cons | GRPs | Ent Rd 02 | Sew | CS.UNSC | SUB.C |
| B5.33 31 00.02.02 3 |  | Pipe Laying | 7.58d | 2026-03-31 A | 2026-04-09 A | B5.33 31 00.02.02 2 | 100% |  |  | Labor [28.35 h]; Foreman [14.17 h]; Plumber Helper [14.17 h]; Plumber [14.17 h]; Operator [14.17 h]; Surveyor [14.17 h]; Surveyor Helper [14.17 h]; Mobile Crane [16 h]; Sew Dia. 200mm Depth: 1.51m - 2.5m [204.55] | 69,143.79 | 69,143.79 | 0.0123562438948964 | Cons. | Z2 | Sew | Cons | GRPs | Ent Rd 02 | Sew | CS.UNSC | SUB.C |
| B5.33 31 00.02.02 4 |  | Embedment & Test | 26.48d | 2026-04-01 A | 2026-05-03 A | B5.33 31 00.02.02 3 | 100% |  |  | Labor [56.7 h]; Foreman [28.35 h]; Plumber Helper [28.35 h]; Plumber [28.35 h]; Operator [56.7 h]; Surveyor [28.35 h]; Surveyor Helper [28.35 h]; Loader [32 h]; Water Tanker [32 h]; Dump Truck [32 h]; Plate Compactor [32 h]; Roller Compactor [32 h]; Sew Dia. 200mm Depth: 1.51m - 2.5m [90.91] | 30,729.97 | 30,729.97 | 0.00549155681141213 | Cons. | Z2 | Sew | Cons | GRPs | Ent Rd 02 | Sew | CS.UNSC | SUB.C |
| B5.33 31 00.02.02 5 |  | Backfilling & Warrning Tape (7.31% Completed) | 135.12d | 2026-04-06 A | 2026-09-15 A | B5.33 31 00.02.02 4 | 100% |  |  | Labor [5.7 h]; Foreman [2.85 h]; Operator [11.4 h]; Surveyor [2.85 h]; Surveyor Helper [2.85 h]; Loader [2.92 h]; Water Tanker [2.92 h]; Dump Truck [2.92 h]; Plate Compactor [2.92 h]; Roller Compactor [2.92 h]; Sew Dia. 200mm Depth: 1.51m - 2.5m [3.32] | 1,123.19 | 1,123.19 | 0.0027462605441443 | Cons. | Z2 | Sew | Cons | GRPs | Ent Rd 02 | Sew | CS.UNSC | SUB.C |
| B5.33 31 00.02.02 5_R |  | Backfilling & Warrning Tape(Rem) | 4.67d | 2026-10-07 A | 2026-10-12 A | B5.33 31 00.02.02 4, B5.33 31 00.02.02 5 | 100% |  |  | Labor [72.26 h]; Foreman [36.13 h]; Operator [144.53 h]; Surveyor [36.13 h]; Surveyor Helper [36.13 h]; Loader [37.08 h]; Water Tanker [37.08 h]; Dump Truck [37.08 h]; Plate Compactor [37.08 h]; Roller Compactor [37.08 h]; Sew Dia. 200mm Depth: 1.51m - 2.5m [42.14] | 14,244.49 | 14,244.49 | 0.0027462605441443 | Cons. | Z2 | Sew | Cons | GRPs | Ent Rd 02 | Sew | CS.UNSC | SUB.C |

| ID | WBS | Activity | Duration | Start | Finish | Predecessors | Complete | Remaining | Planned start | Planned finish | Total float | Free float | Resources | Cost | Actual cost | Weight % | DMM2 Weekly Progress | DMM2 Zones | Networks & Stations | DMM2 Phases | UNASCO | Networks Components | Subcontractors works | Dmm2 Roads | Yellow Sheet |
| --- | --- | --- | --- | --- | --- | --- | --- | --- | --- | --- | --- | --- | --- | --- | --- | --- | --- | --- | --- | --- | --- | --- | --- | --- | --- |
|  | Manholes | **Manholes ?1200** |  | 2026-03-22 | 2026-10-24 |  |  |  |  |  |  |  |  |  |  |  |  |  |  |  |  |  |  |  |  |
|  | 2 | **Depth From 0.0m to 1.5m** |  | 2026-03-29 | 2026-10-24 |  |  |  |  |  |  |  |  |  |  |  |  |  |  |  |  |  |  |  |  |
| B5.33 05 13.01 1 |  | Excavation & Compaction | 2d | 2026-03-29 A | 2026-03-31 A | B5.33 31 00.02.02 1 | 100% |  |  |  |  |  | Labor; Foreman; Operator; Surveyor; Surveyor Helper; Excavator (With Bucket); Water Tanker; Dump Truck; Plate Compactor; MH depth 0 - 1.5m |  |  | 0.00071742015752524 | Cons. | Z2 | Sew | Cons | CS.UNSC | Manhole | SUB.C | Ent Rd 02 | Sew |
| B5.33 05 13.01 2 |  | Blinding Conc, & RC Base | 21d | 2026-04-29 A | 2026-05-23 A | B5.33 05 13.01 1 | 100% |  |  |  |  |  | Labor [42.52 h]; Foreman [21.26 h]; Laboratory Officer [21.26 h]; Carpenter [21.26 h]; Steelfixer [21.26 h]; Mason [21.26 h]; MH depth 0 - 1.5m [0.27] | 2,414.83 | 2,414.83 | 0.0004611986726948 | Cons. | Z2 | Sew | Cons | CS.UNSC | Manhole | SUB.C | Ent Rd 02 | Sew |
| B5.33 05 13.01 3 |  | Manhole Installation | 2d | 2026-05-24 A | 2026-05-25 A | B5.33 05 13.01 2 | 100% |  |  |  |  |  | Labor [28.35 h]; Operator [28.35 h]; Surveyor [14.17 h]; Surveyor Helper [14.17 h]; Boom Truck [16 h]; Mobile Crane [16 h]; MH depth 0 - 1.5m [1.34] | 12,035.8 | 12,035.8 | 0.00212664377410211 | Cons. | Z2 | Sew | Cons | CS.UNSC | Manhole | SUB.C | Ent Rd 02 | Sew |
| B5.33 05 13.01 4 |  | Test, Internal Finishing, Benching & Cover (41.14% Completed) | 78d | 2026-06-17 A | 2026-09-15 A | B5.33 05 13.01 3 | 100% |  |  |  |  |  | Labor [25.66 h]; Foreman [12.83 h]; Plumber Helper [12.83 h]; Plumber [12.83 h]; Mason [12.83 h]; MH depth 0 - 1.5m [0.11] | 993.53 | 993.53 | 0.0004611986726948 | Cons. | Z2 | Sew | Cons | CS.UNSC | Manhole | SUB.C | Ent Rd 02 | Sew |
| B5.33 05 13.01 5 |  | Backfilling (41.14% Completed) | 74.67d | 2026-06-21 A | 2026-09-15 A | B5.33 05 13.065, B5.33 05 13.01 4 SS, B5.33 31 00.02.02 5 SS | 100% |  |  |  |  |  | Labor [32.08 h]; Foreman [16.04 h]; Operator [32.08 h]; Surveyor [16.04 h]; Surveyor Helper [16.04 h]; Loader [16.46 h]; Water Tanker [16.46 h]; Dump Truck [16.46 h]; Plate Compactor [16.46 h]; MH depth 0 - 1.5m [0.23] | 2,042.25 | 2,042.25 | 0.000948019493872638 | Cons. | Z2 | Sew | Cons | CS.UNSC | Manhole | SUB.C | Ent Rd 02 | Sew |
| B5.33 05 13.01 5_R |  | Backfilling(Rem) | 3.08d | 2026-10-14 A | 2026-10-24 | B5.33 05 13.065, B5.33 05 13.01 4_R SS, B5.33 31 00.02.02 5_R SS, B5.33 05 13.01 5 | 33% | 2.06d | 2026-10-14 | 2026-10-18 | 111.26d |  | Labor [45.89 h]; Foreman [22.94 h]; Operator [45.89 h]; Surveyor [22.94 h]; Surveyor Helper [22.94 h]; Loader [23.54 h]; Water Tanker [23.54 h]; Dump Truck [23.54 h]; Plate Compactor [23.54 h]; MH depth 0 - 1.5m [0.33] | 2,921.57 | 964.12 | 0.000948019493872638 | Cons. | Z2 | Sew | Cons | CS.UNSC | Manhole | SUB.C | Ent Rd 02 | Sew |
| B5.33 05 13.01 4_R |  | Test, Internal Finishing, Benching & Cover(Rem) | 2.56d | 2026-10-21 | 2026-10-24 | B5.33 05 13.01 3, B5.33 05 13.01 4 |  |  |  |  | 110.76d |  | Labor [36.71 h]; Foreman [18.35 h]; Plumber Helper [18.35 h]; Plumber [18.35 h]; Mason [18.35 h]; MH depth 0 - 1.5m [0.16] | 1,421.3 |  | 0.0004611986726948 | Cons. | Z2 | Sew | Cons | CS.UNSC | Manhole | SUB.C | Ent Rd 02 | Sew |
|  | 3 | **Depth From 1.5m to 2.5m** |  | 2026-03-22 | 2026-10-24 |  |  |  |  |  |  |  |  |  |  |  |  |  |  |  |  |  |  |  |  |
| B5.33 05 13.02 1 |  | Excavation & Compaction | 0.6d | 2026-03-22 A | 2026-03-24 A | B5.33 05 13.01 1 | 100% |  | 2026-03-24 | 2026-03-24 |  |  | Labor; Foreman; Operator; Surveyor; Surveyor Helper; Excavator (With Bucket); Water Tanker; Dump Truck; Plate Compactor; MH depth 1.51 - 2.5m |  |  | 0.00163451626522375 | Cons. | Z2 | Sew | Cons | CS.UNSC | Manhole | SUB.C | Ent Rd 02 | Sew |
| B5.33 05 13.02 2 |  | Blinding Conc, & RC Base (41.14% Completed) | 116d | 2026-04-29 A | 2026-09-15 A | B5.33 05 13.02 1 | 100% |  |  |  |  |  | Labor [19.25 h]; Foreman [9.62 h]; Laboratory Officer [9.62 h]; Carpenter [9.62 h]; Steelfixer [9.62 h]; Mason [9.62 h]; MH depth 1.51 - 2.5m [0.18] | 2,345.92 | 2,345.92 | 0.00108965546636573 | Cons. | Z2 | Sew | Cons | CS.UNSC | Manhole | SUB.C | Ent Rd 02 | Sew |
| B5.33 05 13.02 3 |  | Manhole Installation (41.14% Completed) | 87d | 2026-06-07 A | 2026-09-15 A | B5.33 05 13.02 2 SS | 100% |  |  |  |  |  | Labor [12.83 h]; Operator [12.83 h]; Surveyor [6.42 h]; Surveyor Helper [6.42 h]; Boom Truck [6.58 h]; Mobile Crane [6.58 h]; MH depth 1.51 - 2.5m [0.82] | 10,400.28 | 10,400.28 | 0.00483081828096108 | Cons. | Z2 | Sew | Cons | CS.UNSC | Manhole | SUB.C | Ent Rd 02 | Sew |
| B5.33 05 13.02 4 |  | Test, Internal Finishing, Benching & Cover (41.14% Completed) | 81d | 2026-06-14 A | 2026-09-15 A | B5.33 05 13.02 3 SS | 100% |  |  |  |  |  | Labor [25.66 h]; Foreman [12.83 h]; Plumber Helper [12.83 h]; Plumber [12.83 h]; Mason [12.83 h]; MH depth 1.51 - 2.5m [0.23] | 2,881.23 | 2,881.23 | 0.00108965546636573 | Cons. | Z2 | Sew | Cons | CS.UNSC | Manhole | SUB.C | Ent Rd 02 | Sew |
| B5.33 05 13.02 5 |  | Backfilling (41.14% Completed) | 74.67d | 2026-06-21 A | 2026-09-15 A | B5.33 05 13.02 4 SS, B5.33 05 13.01 5 SS | 100% |  |  |  |  |  | Labor [32.08 h]; Foreman [16.04 h]; Operator [32.08 h]; Surveyor [16.04 h]; Surveyor Helper [16.04 h]; Loader [16.46 h]; Water Tanker [16.46 h]; Dump Truck [16.46 h]; Plate Compactor [16.46 h]; MH depth 1.51 - 2.5m [0.36] | 4,613.66 | 4,613.66 | 0.0021429945757647 | Cons. | Z2 | Sew | Cons | CS.UNSC | Manhole | SUB.C | Ent Rd 02 | Sew |
| B5.33 05 13.02 2_R |  | Blinding Conc, & RC Base(Rem) | 2.04d | 2026-10-14 A | 2026-10-22 | B5.33 05 13.02 1, B5.33 05 13.02 2 | 33% | 1.37d | 2026-10-14 | 2026-10-17 | 111.95d |  | Labor [27.53 h]; Foreman [13.77 h]; Laboratory Officer [13.77 h]; Carpenter [13.77 h]; Steelfixer [13.77 h]; Mason [13.77 h]; MH depth 1.51 - 2.5m [0.26] | 3,355.99 | 1,107.48 | 0.00108965546636573 | Cons. | Z2 | Sew | Cons | CS.UNSC | Manhole | SUB.C | Ent Rd 02 | Sew |
| B5.33 05 13.02 3_R |  | Manhole Installation(Rem) | 1.52d | 2026-10-14 A | 2026-10-15 A | B5.33 05 13.02 2_R SS, B5.33 05 13.02 3 | 100% |  |  |  |  |  | Labor [18.35 h]; Operator [18.35 h]; Surveyor [9.18 h]; Surveyor Helper [9.18 h]; Boom Truck [9.42 h]; Mobile Crane [9.42 h]; MH depth 1.51 - 2.5m [1.17] | 14,878.27 | 14,878.27 | 0.00483081828096108 | Cons. | Z2 | Sew | Cons | CS.UNSC | Manhole | SUB.C | Ent Rd 02 | Sew |
| B5.33 05 13.02 5_R |  | Backfilling(Rem) | 3.08d | 2026-10-14 A | 2026-10-24 | B5.33 05 13.02 4_R SS, B5.33 05 13.01 5_R SS, B5.33 05 13.02 5 | 33% | 2.06d | 2026-10-14 | 2026-10-18 | 106.26d | 13.94d | Labor [45.89 h]; Foreman [22.94 h]; Operator [45.89 h]; Surveyor [22.94 h]; Surveyor Helper [22.94 h]; Loader [23.54 h]; Water Tanker [23.54 h]; Dump Truck [23.54 h]; Plate Compactor [23.54 h]; MH depth 1.51 - 2.5m [0.52] | 6,600.13 | 2,178.04 | 0.0021429945757647 | Cons. | Z2 | Sew | Cons | CS.UNSC | Manhole | SUB.C | Ent Rd 02 | Sew |
| B5.33 05 13.02 4_R |  | Test, Internal Finishing, Benching & Cover(Rem) | 2.56d | 2026-10-21 | 2026-10-24 | B5.33 05 13.02 3_R SS, B5.33 05 13.02 4 |  |  |  |  | 110.76d |  | Labor [36.71 h]; Foreman [18.35 h]; Plumber Helper [18.35 h]; Plumber [18.35 h]; Mason [18.35 h]; MH depth 1.51 - 2.5m [0.32] | 4,121.79 |  | 0.00108965546636573 | Cons. | Z2 | Sew | Cons | CS.UNSC | Manhole | SUB.C | Ent Rd 02 | Sew |
|  | Sew Plot Connection | **Sewerage Plot Connection** |  | 2026-10-28 | 2026-12-01 |  |  |  |  |  |  |  |  |  |  |  |  |  |  |  |  |  |  |  |  |
| B5..33 31 16.011 |  | Excavation | 10d | 2026-10-28 | 2026-11-09 | B5.33 05 63.011, B1.1.31 23 23.2, B1.1.31 23 16.02_R |  |  |  |  | 74.1d | 0d | Labor [31.18 h]; Foreman [15.59 h]; Operator [31.18 h]; Surveyor [15.59 h]; Surveyor Helper [15.59 h]; Excavator (With Bucket) [16 h]; Water Tanker [16 h]; Dump Truck [16 h]; Plate Compactor [16 h]; GRP Plot Connections dia 150 mm [3.4] | 1,029.9 |  | 0.000517780156896057 | Cons. | Z2 | Sew | Cons | CS.UNSC |  | SUB.C | Ent Rd 02 | Sew |
| B5..33 31 16.012 |  | Sand Bedding | 2d | 2026-11-09 | 2026-11-11 | B5..33 31 16.011, B5.33 31 00.02.05.1 |  |  |  |  | 74.1d | 0d | Labor [31.18 h]; Foreman [15.59 h]; Operator [62.37 h]; Surveyor [15.59 h]; Surveyor Helper [15.59 h]; Loader [16 h]; Water Tanker [16 h]; Dump Truck [16 h]; Plate Compactor [16 h]; GRP Plot Connections dia 150 mm [0.85] | 257.47 |  | 0.000129445039224013 | Cons. | Z2 | Sew | Cons | CS.UNSC |  | SUB.C | Ent Rd 02 | Sew |
| B5..33 31 16.013 |  | Pipe Laying, Fittings | 3d | 2026-11-11 | 2026-11-15 | B5..33 31 16.012 |  |  |  |  | 74.1d | 0d | Labor [31.18 h]; Foreman [15.59 h]; Plumber Helper [15.59 h]; Plumber [15.59 h]; Operator [15.59 h]; Surveyor [15.59 h]; Surveyor Helper [15.59 h]; Mobile Crane [16 h]; GRP Plot Connections dia 150 mm [7.65] | 2,317.27 |  | 0.00116500535301612 | Cons. | Z2 | Sew | Cons | CS.UNSC |  | SUB.C | Ent Rd 02 | Sew |
| B5..33 31 16.014 |  | Embedment & Test | 4d | 2026-11-15 | 2026-11-19 | B5..33 31 16.013 |  |  |  |  | 74.1d | 0d | Labor [62.37 h]; Foreman [31.18 h]; Plumber Helper [31.18 h]; Plumber [31.18 h]; Operator [62.37 h]; Surveyor [31.18 h]; Surveyor Helper [31.18 h]; Loader [32 h]; Water Tanker [32 h]; Dump Truck [32 h]; Plate Compactor [32 h]; Roller Compactor [32 h]; GRP Plot Connections dia 150 mm [3.4] | 1,029.9 |  | 0.000517780156896057 | Cons. | Z2 | Sew | Cons | CS.UNSC |  | SUB.C | Ent Rd 02 | Sew |
| B5..33 31 16.015 |  | Backfilling & Warrning Tape | 10d | 2026-11-19 | 2026-12-01 | B5..33 31 16.014, B5.33 31 00.01.02.47 |  |  |  |  | 74.1d | 0d | Labor [77.96 h]; Foreman [38.98 h]; Operator [155.92 h]; Surveyor [38.98 h]; Surveyor Helper [38.98 h]; Loader [40 h]; Water Tanker [40 h]; Dump Truck [40 h]; Plate Compactor [40 h]; Roller Compactor [40 h]; GRP Plot Connections dia 150 mm [1.7] | 514.95 |  | 0.000258890078448026 | Cons. | Z2 | Sew | Cons | CS.UNSC |  | SUB.C | Ent Rd 02 | Sew |

| ID | WBS | Activity | Duration | Start | Finish | Predecessors | Complete | Planned start | Planned finish | Total float | Free float | Resources | Cost | Actual cost | Weight % | DMM2 Weekly Progress | DMM2 Zones | Networks & Stations | DMM2 Phases | UNASCO | Subcontractors works | Dmm2 Roads | Yellow Sheet | Networks Components |
| --- | --- | --- | --- | --- | --- | --- | --- | --- | --- | --- | --- | --- | --- | --- | --- | --- | --- | --- | --- | --- | --- | --- | --- | --- |
|  | Discharge Ch | **Discharge Chamber** |  | 2026-10-21 | 2026-11-14 |  |  |  |  |  |  |  |  |  |  |  |  |  |  |  |  |  |  |  |
| B5.33 05 63.011 |  | Excavation & Compaction | 3d | 2026-10-21 | 2026-10-24 | B5.33 05 13.02 1 |  |  |  | 77.32d | 0d | Labor [31.18 h]; Foreman [15.59 h]; Operator [31.18 h]; Surveyor [15.59 h]; Surveyor Helper [15.59 h]; Excavator (With Bucket) [16 h]; Water Tanker [16 h]; Dump Truck [16 h]; Plate Compactor [16 h]; Sew. Discharge chamber, size 1500*2000 mm approximately [0.15] | 2,409.37 |  | 0.000460296899405457 | Cons. | Z2 | Sew | Cons | CS.UNSC | SUB.C | Ent Rd 02 | Sew |  |
| B5.33 05 63.012 |  | Blinding Conc, & RC Base | 3d | 2026-10-25 | 2026-10-27 | B5.33 05 63.011 |  |  |  | 92.32d | 0d | Labor [46.78 h]; Foreman [23.39 h]; Laboratory Officer [23.39 h]; Carpenter [23.39 h]; Steelfixer [23.39 h]; Mason [23.39 h]; Sew. Discharge chamber, size 1500*2000 mm approximately [0.1] | 1,686.56 |  | 0.00032220782958382 | Cons. | Z2 | Sew | Cons | CS.UNSC | SUB.C | Ent Rd 02 | Sew |  |
| B5.33 05 63.013 |  | Chamber Installation | 6d | 2026-10-28 | 2026-11-03 | B5.33 05 63.012, DMM2-Proc-Delv-2328_R, DMM2-Proc-Delv-1888 |  |  |  | 92.32d | 0d | Labor [93.55 h]; Operator [93.55 h]; Surveyor [46.78 h]; Surveyor Helper [46.78 h]; Boom Truck [48 h]; Mobile Crane [48 h]; Sew. Discharge chamber, size 1500*2000 mm approximately [0.45] | 7,228.1 |  | 0.00138089069821637 | Cons. | Z2 | Sew | Cons | CS.UNSC | SUB.C | Ent Rd 02 | Sew |  |
| B5.33 05 63.014 |  | Test, Internal Finishing, Benching & Cover | 4d | 2026-11-04 | 2026-11-08 | B5.33 05 63.013 |  |  |  | 92.32d | 0d | Labor [62.37 h]; Foreman [31.18 h]; Plumber Helper [31.18 h]; Plumber [31.18 h]; Mason [31.18 h]; Sew. Discharge chamber, size 1500*2000 mm approximately [0.1] | 1,686.56 |  | 0.00032220782958382 | Cons. | Z2 | Sew | Cons | CS.UNSC | SUB.C | Ent Rd 02 | Sew |  |
| B5.33 05 63.015 |  | Backfilling | 5d | 2026-11-09 | 2026-11-14 | B5.33 05 63.014, B5.33 05 13.02 5_R |  |  |  | 92.32d | 7d | Labor [77.96 h]; Foreman [38.98 h]; Operator [77.96 h]; Surveyor [38.98 h]; Surveyor Helper [38.98 h]; Loader [40 h]; Water Tanker [40 h]; Dump Truck [40 h]; Plate Compactor [40 h]; Sew. Discharge chamber, size 1500*2000 mm approximately [0.19] | 3,132.18 |  | 0.000598385969227095 | Cons. | Z2 | Sew | Cons | CS.UNSC | SUB.C | Ent Rd 02 | Sew |  |
|  | Stormwater Network | **Stormwater Network** |  | 2026-03-13 | 2026-10-25 |  |  |  |  |  |  |  |  |  |  |  |  |  |  |  |  |  |  |  |
|  | GRP | **GRP** |  | 2026-03-13 | 2026-10-25 |  |  |  |  |  |  |  |  |  |  |  |  |  |  |  |  |  |  |  |
|  | ?400 | **?400** |  | 2026-03-13 | 2026-10-25 |  |  |  |  |  |  |  |  |  |  |  |  |  |  |  |  |  |  |  |
|  | 3 | **Depth From 1.5m to 2.5m** |  | 2026-03-13 | 2026-10-25 |  |  |  |  |  |  |  |  |  |  |  |  |  |  |  |  |  |  |  |
| B6.33 42 11.02 1 |  | Excavation | 22.01d | 2026-03-13 A | 2026-04-14 A | B1.2.31 23 16.01.4 | 100% | 2026-03-14 | 2026-04-14 |  |  | Labor [28.35 h]; Foreman [14.17 h]; Operator [28.35 h]; Surveyor [14.17 h]; Surveyor Helper [14.17 h]; Excavator (With Bucket) [16 h]; Water Tanker [16 h]; Dump Truck [16 h]; Plate Compactor [16 h]; Depth: 1.51m - 2.5m [3.99] | 1,531.45 | 1,531.45 | 0.00310601117599926 | Cons. | Z2 | Storm | Cons | CS.UNSC | SUB.C | Ent Rd 02 | Strm | GRPs |
| B6.33 42 11.02 2 |  | Sand Bedding | 26.89d | 2026-03-15 A | 2026-04-21 A | B6.33 42 11.02 1 | 100% |  |  |  |  | Labor [28.35 h]; Foreman [14.17 h]; Operator [56.7 h]; Surveyor [14.17 h]; Surveyor Helper [14.17 h]; Loader [16 h]; Water Tanker [16 h]; Dump Truck [16 h]; Plate Compactor [16 h]; Depth: 1.51m - 2.5m [1] | 383 | 383 | 0.000776776306783888 | Cons. | Z2 | Storm | Cons | CS.UNSC | SUB.C | Ent Rd 02 | Strm | GRPs |
| B6.33 42 11.02 3 |  | Pipe Laying | 32.14d | 2026-03-16 A | 2026-04-28 A | B6.33 42 11.02 2 | 100% |  |  |  |  | Labor [28.35 h]; Foreman [14.17 h]; Plumber Helper [14.17 h]; Plumber [14.17 h]; Operator [14.17 h]; Surveyor [14.17 h]; Surveyor Helper [14.17 h]; Mobile Crane [16 h]; Depth: 1.51m - 2.5m [8.98] | 3,445.9 | 3,445.9 | 0.00698879865878235 | Cons. | Z2 | Storm | Cons | CS.UNSC | SUB.C | Ent Rd 02 | Strm | GRPs |
| B6.33 42 11.02 4 |  | Embedment & Test | 25.67d | 2026-04-01 A | 2026-05-02 A | B6.33 42 11.02 3 | 100% |  |  |  |  | Labor [56.7 h]; Foreman [28.35 h]; Plumber Helper [28.35 h]; Plumber [28.35 h]; Operator [56.7 h]; Surveyor [28.35 h]; Surveyor Helper [28.35 h]; Loader [32 h]; Water Tanker [32 h]; Dump Truck [32 h]; Plate Compactor [32 h]; Roller Compactor [32 h]; Depth: 1.51m - 2.5m [3.99] | 1,531.45 | 1,531.45 | 0.00310601117599926 | Cons. | Z2 | Storm | Cons | CS.UNSC | SUB.C | Ent Rd 02 | Strm | GRPs |
| B6.33 42 11.02 5 |  | Backfilling & Warrning Tape (69.15% Completed) | 137d | 2026-04-05 A | 2026-09-15 A | B6.33 42 11.02 4 | 100% |  |  |  |  | Labor [53.91 h]; Foreman [26.96 h]; Operator [107.83 h]; Surveyor [26.96 h]; Surveyor Helper [26.96 h]; Loader [27.66 h]; Water Tanker [27.66 h]; Dump Truck [27.66 h]; Plate Compactor [27.66 h]; Roller Compactor [27.66 h]; Depth: 1.51m - 2.5m [1.38] | 529.71 | 529.71 | 0.00155355261356778 | Cons. | Z2 | Storm | Cons | CS.UNSC | SUB.C | Ent Rd 02 | Strm | GRPs |
| B6.33 42 11.02 5_R |  | Backfilling & Warrning Tape(Rem) | 4d | 2026-10-21 | 2026-10-25 | B6.33 42 11.02 4, B6.33 42 11.02 5 |  |  |  | 106.38d | 0d | Labor [24.05 h]; Foreman [12.02 h]; Operator [48.1 h]; Surveyor [12.02 h]; Surveyor Helper [12.02 h]; Loader [12.34 h]; Water Tanker [12.34 h]; Dump Truck [12.34 h]; Plate Compactor [12.34 h]; Roller Compactor [12.34 h]; Depth: 1.51m - 2.5m [0.62] | 236.29 |  | 0.00155355261356778 | Cons. | Z2 | Storm | Cons | CS.UNSC | SUB.C | Ent Rd 02 | Strm | GRPs |
|  | Strom Manholes | **Manholes** |  | 2026-04-01 | 2026-10-22 |  |  |  |  |  |  |  |  |  |  |  |  |  |  |  |  |  |  |  |
|  | 1 | **?1200** |  | 2026-04-01 | 2026-10-22 |  |  |  |  |  |  |  |  |  |  |  |  |  |  |  |  |  |  |  |
|  | 3 | **Depth From 1.5m to 2.5m** |  | 2026-04-01 | 2026-10-22 |  |  |  |  |  |  |  |  |  |  |  |  |  |  |  |  |  |  |  |
| B6.33 05 13.01 1 |  | Excavation & Compaction | 2d | 2026-04-01 A | 2026-04-04 A | B6.33 42 11.02 1 | 100% |  |  |  |  | Labor [28.35 h]; Foreman [14.17 h]; Operator [28.35 h]; Surveyor [14.17 h]; Surveyor Helper [14.17 h]; Excavator (With Bucket) [16 h]; Water Tanker [16 h]; Dump Truck [16 h]; Plate Compactor [16 h]; MH depth 1.50 - 2.5m [1.07] | 9,648.47 | 9,648.47 | 2.49372657086146E-005 | Cons. | Z2 | Storm | Cons | CS.UNSC | SUB.C | Ent Rd 02 | Strm | Manhole |
| B6.33 05 13.01 2 |  | Blinding Conc, & RC Base | 15.17d | 2026-05-04 A | 2026-05-21 A | B6.33 05 13.01 1 | 100% |  |  |  |  | Labor [42.52 h]; Foreman [21.26 h]; Laboratory Officer [21.26 h]; Carpenter [21.26 h]; Steelfixer [21.26 h]; Mason [21.26 h]; MH depth 1.50 - 2.5m [1.07] | 9,648.47 | 9,648.47 | 2.49372657086146E-005 | Cons. | Z2 | Storm | Cons | CS.UNSC | SUB.C | Ent Rd 02 | Strm | Manhole |
| B6.33 05 13.01 3 |  | Manhole Installation (78.85% Completed) | 85d | 2026-06-09 A | 2026-09-15 A | B6.33 05 13.01 2 | 100% |  |  |  |  | Labor [24.59 h]; Operator [24.59 h]; Surveyor [12.29 h]; Surveyor Helper [12.29 h]; Boom Truck [12.62 h]; Mobile Crane [12.62 h]; MH depth 1.50 - 2.5m [3.39] | 30,431.27 | 30,431.27 | 9.97490628344586E-005 | Cons. | Z2 | Storm | Cons | CS.UNSC | SUB.C | Ent Rd 02 | Strm | Manhole |
| B6.33 05 13.01 4 |  | Test, Internal Finishing, Benching & Cover (78.85% Completed) | 83d | 2026-06-11 A | 2026-09-15 A | B6.33 05 13.01 3 SS | 100% |  |  |  |  | Labor [49.18 h]; Foreman [24.59 h]; Plumber Helper [24.59 h]; Plumber [24.59 h]; Mason [24.59 h]; MH depth 1.50 - 2.5m [0.85] | 7,607.82 | 7,607.82 | 2.49372657086146E-005 | Cons. | Z2 | Storm | Cons | CS.UNSC | SUB.C | Ent Rd 02 | Strm | Manhole |
| B6.33 05 13.01 5 |  | Backfilling (78.85% Completed) | 80d | 2026-06-15 A | 2026-09-15 A | B6.33 05 13.01 4 SS, B6.33 05 39.01.3717 SS | 100% |  |  |  |  | Labor [61.47 h]; Foreman [30.74 h]; Operator [61.47 h]; Surveyor [30.74 h]; Surveyor Helper [30.74 h]; Loader [31.54 h]; Water Tanker [31.54 h]; Dump Truck [31.54 h]; Plate Compactor [31.54 h]; MH depth 1.50 - 2.5m [1.69] | 15,215.64 | 15,215.64 | 4.98745314172292E-005 | Cons. | Z2 | Storm | Cons | CS.UNSC | SUB.C | Ent Rd 02 | Strm | Manhole |
| B6.33 05 13.01 3_R |  | Manhole Installation(Rem) | 2d | 2026-10-14 A | 2026-10-15 A | B6.33 05 13.01 2, B6.33 05 13.01 3 | 100% |  |  |  |  | Labor [6.6 h]; Operator [6.6 h]; Surveyor [3.3 h]; Surveyor Helper [3.3 h]; Boom Truck [3.38 h]; Mobile Crane [3.38 h]; MH depth 1.50 - 2.5m [0.91] | 8,162.61 | 8,162.61 | 9.97490628344586E-005 | Cons. | Z2 | Storm | Cons | CS.UNSC | SUB.C | Ent Rd 02 | Strm | Manhole |
| B6.33 05 13.01 5_R |  | Backfilling(Rem) | 4d | 2026-10-15 A | 2026-10-19 A | B6.33 05 13.01 4_R SS, B6.33 05 39.01.3717_R SS, B6.33 05 13.01 5, B6.33 42 11.13.205_R | 100% | 2026-10-24 | 2026-10-28 |  |  | Labor [16.49 h]; Foreman [8.24 h]; Operator [16.49 h]; Surveyor [8.24 h]; Surveyor Helper [8.24 h]; Loader [8.46 h]; Water Tanker [8.46 h]; Dump Truck [8.46 h]; Plate Compactor [8.46 h]; MH depth 1.50 - 2.5m [0.45] | 4,081.3 | 4,081.3 | 4.98745314172292E-005 | Cons. | Z2 | Storm | Cons | CS.UNSC | SUB.C | Ent Rd 02 | Strm | Manhole |
| B6.33 05 13.01 4_R |  | Test, Internal Finishing, Benching & Cover(Rem) | 2d | 2026-10-21 | 2026-10-22 | B6.33 05 13.01 3_R SS, B6.33 05 13.01 4 |  |  |  | 111.32d |  | Labor [13.19 h]; Foreman [6.6 h]; Plumber Helper [6.6 h]; Plumber [6.6 h]; Mason [6.6 h]; MH depth 1.50 - 2.5m [0.23] | 2,040.65 |  | 2.49372657086146E-005 | Cons. | Z2 | Storm | Cons | CS.UNSC | SUB.C | Ent Rd 02 | Strm | Manhole |

| ID | WBS | Activity | Duration | Start | Finish | Predecessors | Complete | Remaining | Planned start | Planned finish | Total float | Free float | Resources | Cost | Actual cost | Weight % | DMM2 Weekly Progress | DMM2 Zones | Networks & Stations | DMM2 Phases | UNASCO | Networks Components | Subcontractors works | Dmm2 Roads | Yellow Sheet |
| --- | --- | --- | --- | --- | --- | --- | --- | --- | --- | --- | --- | --- | --- | --- | --- | --- | --- | --- | --- | --- | --- | --- | --- | --- | --- |
|  | 3 | **?2000** |  | 2026-04-04 | 2026-10-22 |  |  |  |  |  |  |  |  |  |  |  |  |  |  |  |  |  |  |  |  |
|  | 4 | **Depth From 2.5m to 3.5m** |  | 2026-04-04 | 2026-10-22 |  |  |  |  |  |  |  |  |  |  |  |  |  |  |  |  |  |  |  |  |
| B6.33 05 13.07 1 |  | Excavation & Compaction | 2d | 2026-04-04 A | 2026-04-06 A | B6.33 05 13.01 1 | 100% |  |  |  |  |  | Labor [28.35 h]; Foreman [14.17 h]; Operator [28.35 h]; Surveyor [14.17 h]; Surveyor Helper [14.17 h]; Excavator (With Bucket) [16 h]; Water Tanker [16 h]; Dump Truck [16 h]; Plate Compactor [16 h]; Storm MH depth 2.51 - 3.5m [0.63] | 10,765.08 | 10,765.08 | 0.00208346832855844 | Cons. | Z2 | Storm | Cons | CS.UNSC | Manhole | SUB.C | Ent Rd 02 | Strm |
| B6.33 05 13.07 2 |  | Blinding Conc, & RC Base (78.85% Completed) | 85d | 2026-06-09 A | 2026-09-15 A | B6.33 05 13.07 1 | 100% |  |  |  |  |  | Labor [36.88 h]; Foreman [18.44 h]; Laboratory Officer [18.44 h]; Carpenter [18.44 h]; Steelfixer [18.44 h]; Mason [18.44 h]; Storm MH depth 2.51 - 3.5m [0.33] | 5,594.54 | 5,594.54 | 0.00137319503473171 | Cons. | Z2 | Storm | Cons | CS.UNSC | Manhole | SUB.C | Ent Rd 02 | Strm |
| B6.33 05 13.07 4 |  | Test, Internal Finishing, Benching & Cover (88.00% Completed) | 82d | 2026-06-13 A | 2026-09-15 A | B6.33 05 13.07 3 SS | 100% |  |  |  |  |  | Labor [54.89 h]; Foreman [27.44 h]; Plumber Helper [27.44 h]; Plumber [27.44 h]; Mason [27.44 h]; Storm MH depth 2.51 - 3.5m [0.37] | 6,243.75 | 6,243.75 | 0.00137319503473171 | Cons. | Z2 | Storm | Cons | CS.UNSC | Manhole | SUB.C | Ent Rd 02 | Strm |
| B6.33 05 13.07 3 |  | Manhole Installation (80.00% Completed) | 81d | 2026-06-14 A | 2026-09-15 A | B6.33 05 13.07 2 SS | 100% |  |  |  |  |  | Labor [24.95 h]; Operator [24.95 h]; Surveyor [12.47 h]; Surveyor Helper [12.47 h]; Boom Truck [12.8 h]; Mobile Crane [12.8 h]; Storm MH depth 2.51 - 3.5m [1.58] | 26,878.92 | 26,878.92 | 0.00625042100380389 | Cons. | Z2 | Storm | Cons | CS.UNSC | Manhole | SUB.C | Ent Rd 02 | Strm |
| B6.33 05 13.07 5 |  | Backfilling (80.00% Completed) | 78d | 2026-06-17 A | 2026-09-15 A | B6.33 05 13.07 4 SS | 100% |  |  |  |  |  | Labor [62.37 h]; Foreman [31.18 h]; Operator [62.37 h]; Surveyor [31.18 h]; Surveyor Helper [31.18 h]; Loader [32 h]; Water Tanker [32 h]; Dump Truck [32 h]; Plate Compactor [32 h]; Storm MH depth 2.51 - 3.5m [0.73] | 12,405 | 12,405 | 0.00300107232895791 | Cons. | Z2 | Storm | Cons | CS.UNSC | Manhole | SUB.C | Ent Rd 02 | Strm |
| B6.33 05 13.07 2_R |  | Blinding Conc, & RC Base(Rem) | 2d | 2026-09-20 A | 2026-09-21 A | B6.33 05 13.07 1, B6.33 05 13.07 2 | 100% |  | 2026-09-16 | 2026-09-17 |  |  | Labor [9.89 h]; Foreman [4.95 h]; Laboratory Officer [4.95 h]; Carpenter [4.95 h]; Steelfixer [4.95 h]; Mason [4.95 h]; Storm MH depth 2.51 - 3.5m [0.09] | 1,500.63 | 1,500.63 | 0.00137319503473171 | Cons. | Z2 | Storm | Cons | CS.UNSC | Manhole | SUB.C | Ent Rd 02 | Strm |
| B6.33 05 13.07 3_R |  | Manhole Installation(Rem) | 2d | 2026-09-26 A | 2026-09-27 A | B6.33 05 13.07 2_R SS, B6.33 05 13.07 3 | 100% |  | 2026-09-16 | 2026-09-17 |  |  | Labor [6.24 h]; Operator [6.24 h]; Surveyor [3.12 h]; Surveyor Helper [3.12 h]; Boom Truck [3.2 h]; Mobile Crane [3.2 h]; Storm MH depth 2.51 - 3.5m [0.39] | 6,719.73 | 6,719.73 | 0.00625042100380389 | Cons. | Z2 | Storm | Cons | CS.UNSC | Manhole | SUB.C | Ent Rd 02 | Strm |
| B6.33 05 13.07 5_R |  | Backfilling(Rem) | 2d | 2026-09-30 A | 2026-10-01 A | B6.33 05 13.07 4_R SS, B6.33 05 13.07 5 | 100% |  | 2026-09-16 | 2026-09-17 |  |  | Labor [15.59 h]; Foreman [7.8 h]; Operator [15.59 h]; Surveyor [7.8 h]; Surveyor Helper [7.8 h]; Loader [8 h]; Water Tanker [8 h]; Dump Truck [8 h]; Plate Compactor [8 h]; Storm MH depth 2.51 - 3.5m [0.18] | 3,101.25 | 3,101.25 | 0.00300107232895791 | Cons. | Z2 | Storm | Cons | CS.UNSC | Manhole | SUB.C | Ent Rd 02 | Strm |
| B6.33 05 13.07 4_R |  | Test, Internal Finishing, Benching & Cover(Rem) | 2d | 2026-10-21 | 2026-10-22 | B6.33 05 13.07 3_R SS, B6.33 05 13.07 4 |  |  |  |  | 111.32d |  | Labor [7.48 h]; Foreman [3.74 h]; Plumber Helper [3.74 h]; Plumber [3.74 h]; Mason [3.74 h]; Storm MH depth 2.51 - 3.5m [0.05] | 851.42 |  | 0.00137319503473171 | Cons. | Z2 | Storm | Cons | CS.UNSC | Manhole | SUB.C | Ent Rd 02 | Strm |
|  | Catch Basins | **Catch Basins** |  | 2026-06-02 | 2026-10-22 |  |  |  |  |  |  |  |  |  |  |  |  |  |  |  |  |  |  |  |  |
|  | Sing | **Single** |  | 2026-06-07 | 2026-10-21 |  |  |  |  |  |  |  |  |  |  |  |  |  |  |  |  |  |  |  |  |
| B6.33 05 40.01.210 |  | Excavation, Compaction & Vapour Barrier (80.00% Completed) | 87d | 2026-06-07 A | 2026-09-15 A | B6.33 05 13.07 1 | 100% |  |  |  |  |  | Labor [24.95 h]; Foreman [12.47 h]; Operator [24.95 h]; Surveyor [12.47 h]; Surveyor Helper [12.47 h]; Excavator (With Bucket) [12.8 h]; Water Tanker [12.8 h]; Dump Truck [12.8 h]; Roller Compactor [12.8 h]; Single Catch basin [2.38] | 10,768.7 | 10,768.7 | 0.00295277448760277 | Cons. | Z2 | Storm | Cons | CS.UNSC | CBs | SUB.C | Ent Rd 02 | Strm |
| B6.33 05 40.01.220 |  | Blinding Conc. (80.00% Completed) | 85d | 2026-06-09 A | 2026-09-15 A | B6.33 05 40.01.210 SS | 100% |  |  |  |  |  | Labor [24.95 h]; Foreman [12.47 h]; Laboratory Officer [12.47 h]; Carpenter [12.47 h]; Steelfixer [12.47 h]; Mason [12.47 h]; Single Catch basin [1.59] | 7,194.81 | 7,194.81 | 0.00197281439564727 | Cons. | Z2 | Storm | Cons | CS.UNSC | CBs | SUB.C | Ent Rd 02 | Strm |
| B6.33 05 40.01.230 |  | Catch Basin Installation (80.00% Completed) | 82d | 2026-06-13 A | 2026-09-15 A | B6.33 05 40.01.220 SS | 100% |  |  |  |  |  | Labor [37.42 h]; Foreman [18.71 h]; Carpenter [18.71 h]; Steelfixer [18.71 h]; Mason [18.71 h]; Operator [37.42 h]; Surveyor [18.71 h]; Surveyor Helper [18.71 h]; Boom Truck [19.2 h]; Single Catch basin [7.15] | 32,306.11 | 32,306.11 | 0.00885832346280832 | Cons. | Z2 | Storm | Cons | CS.UNSC | CBs | SUB.C | Ent Rd 02 | Strm |
| B6.33 05 40.01.240 |  | Backfilling, DI Frame & Grate Cover Fixing (80.00% Completed) | 77d | 2026-06-18 A | 2026-09-15 A | B6.33 42 11.35 2 SS | 100% |  |  |  |  |  | Labor [62.37 h]; Foreman [31.18 h]; Operator [62.37 h]; Surveyor [31.18 h]; Surveyor Helper [31.18 h]; Loader [32 h]; Water Tanker [32 h]; Dump Truck [32 h]; Plate Compactor [32 h]; Single Catch basin [4.76] | 21,537.41 | 21,537.41 | 0.00590554897520555 | Cons. | Z2 | Storm | Cons | CS.UNSC | CBs | SUB.C | Ent Rd 02 | Strm |
| B6.33 05 40.01.220_R |  | Blinding Conc.(Rem) | 2d | 2026-09-19 A | 2026-09-21 A | B6.33 05 40.01.210_R SS, B6.33 05 40.01.220 | 100% |  | 2026-09-16 | 2026-09-17 |  |  | Labor [6.24 h]; Foreman [3.12 h]; Laboratory Officer [3.12 h]; Carpenter [3.12 h]; Steelfixer [3.12 h]; Mason [3.12 h]; Single Catch basin [0.4] | 1,798.7 | 1,798.7 | 0.00197281439564727 | Cons. | Z2 | Storm | Cons | CS.UNSC | CBs | SUB.C | Ent Rd 02 | Strm |
| B6.33 05 40.01.230_R |  | Catch Basin Installation(Rem) | 2d | 2026-09-20 A | 2026-09-22 A | B6.33 05 40.01.220_R SS, B6.33 05 40.01.230 | 100% |  | 2026-09-16 | 2026-09-17 |  |  | Labor [9.36 h]; Foreman [4.68 h]; Carpenter [4.68 h]; Steelfixer [4.68 h]; Mason [4.68 h]; Operator [9.36 h]; Surveyor [4.68 h]; Surveyor Helper [4.68 h]; Boom Truck [4.8 h]; Single Catch basin [1.79] | 8,076.53 | 8,076.53 | 0.00885832346280832 | Cons. | Z2 | Storm | Cons | CS.UNSC | CBs | SUB.C | Ent Rd 02 | Strm |
| B6.33 05 40.01.240_R |  | Backfilling, DI Frame & Grate Cover Fixing(Rem) | 2d | 2026-09-26 A | 2026-09-28 A | B6.33 42 11.35 2_R SS, B6.33 05 40.01.240 | 100% |  | 2026-09-16 | 2026-09-17 |  |  | Labor [15.59 h]; Foreman [7.8 h]; Operator [15.59 h]; Surveyor [7.8 h]; Surveyor Helper [7.8 h]; Loader [8 h]; Water Tanker [8 h]; Dump Truck [8 h]; Plate Compactor [8 h]; Single Catch basin [1.19] | 5,384.35 | 5,384.35 | 0.00590554897520555 | Cons. | Z2 | Storm | Cons | CS.UNSC | CBs | SUB.C | Ent Rd 02 | Strm |
| B6.33 05 40.01.210_R |  | Excavation, Compaction & Vapour Barrier(Rem) | 2d | 2026-10-14 A | 2026-10-21 | B6.33 05 13.07 1, B6.33 05 40.01.210 | 75% | 0.5d | 2026-10-14 | 2026-10-15 | 112.82d |  | Labor [6.24 h]; Foreman [3.12 h]; Operator [6.24 h]; Surveyor [3.12 h]; Surveyor Helper [3.12 h]; Excavator (With Bucket) [3.2 h]; Water Tanker [3.2 h]; Dump Truck [3.2 h]; Roller Compactor [3.2 h]; Single Catch basin [0.6] | 2,692.18 | 2,019.13 | 0.00295277448760277 | Cons. | Z2 | Storm | Cons | CS.UNSC | CBs | SUB.C | Ent Rd 02 | Strm |
|  | Dou | **Double** |  | 2026-10-14 | 2026-10-22 |  |  |  |  |  |  |  |  |  |  |  |  |  |  |  |  |  |  |  |  |
| B6.33 05 40.01.800 |  | Backfilling, DI Frame & Grate Cover Fixing | 6d | 2026-10-14 A | 2026-10-22 | B6.33 42 11.36 2_R | 75% | 1.5d | 2026-10-14 | 2026-10-21 | 75.82d | 0d | Labor [77.96 h]; Foreman [38.98 h]; Operator [77.96 h]; Surveyor [38.98 h]; Surveyor Helper [38.98 h]; Loader [40 h]; Water Tanker [40 h]; Dump Truck [40 h]; Plate Compactor [40 h]; Double Catch basin [1.19] | 10,516.1 | 7,887.07 | 0.00175890508448974 | Cons. | Z2 | Storm | Cons | CS.UNSC | CBs | SUB.C | Ent Rd 02 | Strm |
| B6.33 05 40.01.770 |  | Excavation, Compaction & Vapour Barrier | 3d | 2026-10-17 A | 2026-10-21 | B6.33 05 40.01.210_R | 75% | 0.75d | 2026-10-17 | 2026-10-19 | 112.57d |  | Labor [31.18 h]; Foreman [15.59 h]; Operator [31.18 h]; Surveyor [15.59 h]; Surveyor Helper [15.59 h]; Excavator (With Bucket) [16 h]; Water Tanker [16 h]; Dump Truck [16 h]; Roller Compactor [16 h]; Double Catch basin [0.6] | 5,258.04 | 3,943.53 | 0.000879450288447266 | Cons. | Z2 | Storm | Cons | CS.UNSC | CBs | SUB.C | Ent Rd 02 | Strm |
| B6.33 05 40.01.780 |  | Blinding Conc. | 3d | 2026-10-18 A | 2026-10-21 | B6.33 05 40.01.770 | 75% | 0.75d | 2026-10-20 | 2026-10-22 | 112.57d |  | Labor [31.18 h]; Foreman [15.59 h]; Laboratory Officer [15.59 h]; Carpenter [15.59 h]; Steelfixer [15.59 h]; Mason [15.59 h]; Double Catch basin [0.39] | 3,455.28 | 2,142.27 | 0.000577924475265344 | Cons. | Z2 | Storm | Cons | CS.UNSC | CBs | SUB.C | Ent Rd 02 | Strm |
| B6.33 05 40.01.790 |  | Catch Basin Installation | 4d | 2026-10-19 A | 2026-10-21 | B6.33 05 40.01.780 | 75% | 1d | 2026-10-24 | 2026-10-27 | 112.32d | 0d | Labor [46.78 h]; Foreman [23.39 h]; Carpenter [23.39 h]; Steelfixer [23.39 h]; Mason [23.39 h]; Operator [46.78 h]; Surveyor [23.39 h]; Surveyor Helper [23.39 h]; Boom Truck [24 h]; Double Catch basin [1.81] | 15,924.38 | 6,900.56 | 0.00266348484222734 | Cons. | Z2 | Storm | Cons | CS.UNSC | CBs | SUB.C | Ent Rd 02 | Strm |

| ID | WBS | Activity | Duration | Start | Finish | Predecessors | Complete | Remaining | Planned start | Planned finish | Total float | Free float | Resources | Cost | Actual cost | Weight % | DMM2 Weekly Progress | DMM2 Zones | Networks & Stations | DMM2 Phases | UNASCO | Networks Components | Subcontractors works | Dmm2 Roads | Yellow Sheet |
| --- | --- | --- | --- | --- | --- | --- | --- | --- | --- | --- | --- | --- | --- | --- | --- | --- | --- | --- | --- | --- | --- | --- | --- | --- | --- |
|  | UPVC | **UPVC** |  | 2026-06-02 | 2026-10-21 |  |  |  |  |  |  |  |  |  |  |  |  |  |  |  |  |  |  |  |  |
|  | UPVC300 | **?300 From 0.0 to 1.5m** |  | 2026-06-02 | 2026-10-21 |  |  |  |  |  |  |  |  |  |  |  |  |  |  |  |  |  |  |  |  |
| B6.33 42 11.35 1 |  | Catch Basin Opening Prep. (68.04% Completed) | 91d | 2026-06-02 A | 2026-09-15 A | B6.33 05 40.01.230 SS | 100% |  |  |  |  |  | Labor [21.22 h]; Foreman [10.61 h]; Plumber Helper [10.61 h]; Plumber [10.61 h]; less than 1.5 [31.72] | 19,075.67 | 19,075.67 | 0.0150835855285905 | Cons. | Z2 | Storm | Cons | CS.UNSC | UPVC | SUB.C | Ent Rd 02 | Strm |
| B6.33 42 11.35 2 |  | Fittings & Pipe Installation (68.04% Completed) | 86d | 2026-06-08 A | 2026-09-15 A | B6.33 42 11.35 1 SS | 100% |  |  |  |  |  | Labor [21.22 h]; Foreman [10.61 h]; Plumber Helper [10.61 h]; Plumber [10.61 h]; Surveyor [10.61 h]; Surveyor Helper [10.61 h]; less than 1.5 [126.87] | 76,302.67 | 76,302.67 | 0.0603343421083148 | Cons. | Z2 | Storm | Cons | CS.UNSC | UPVC | SUB.C | Ent Rd 02 | Strm |
| B6.33 42 11.35 1_R |  | Catch Basin Opening Prep.(Rem) | 2.09d | 2026-10-07 A | 2026-10-21 | B6.33 05 40.01.230_R SS, B6.33 42 11.35 1 | 64% | 0.75d | 2026-10-07 | 2026-10-10 | 112.57d |  | Labor [9.97 h]; Foreman [4.98 h]; Plumber Helper [4.98 h]; Plumber [4.98 h]; less than 1.5 [14.9] | 8,960.29 | 5,734.59 | 0.0150835855285905 | Cons. | Z2 | Storm | Cons | CS.UNSC | UPVC | SUB.C | Ent Rd 02 | Strm |
| B6.33 42 11.35 2_R |  | Fittings & Pipe Installation(Rem) | 2.09d | 2026-10-07 A | 2026-10-21 | B6.33 42 11.35 1_R SS, B6.33 42 11.35 2 | 64% | 0.75d | 2026-10-07 | 2026-10-10 | 112.57d |  | Labor [9.97 h]; Foreman [4.98 h]; Plumber Helper [4.98 h]; Plumber [4.98 h]; Surveyor [4.98 h]; Surveyor Helper [4.98 h]; less than 1.5 [59.59] | 35,841.17 | 22,938.35 | 0.0603343421083148 | Cons. | Z2 | Storm | Cons | CS.UNSC | UPVC | SUB.C | Ent Rd 02 | Strm |
|  | UPVC3001 | **?400 From 0.0 to 1.5m** |  | 2026-06-07 | 2026-10-21 |  |  |  |  |  |  |  |  |  |  |  |  |  |  |  |  |  |  |  |  |
| B6.33 42 11.36 2 |  | Fittings & Pipe Installation (68.04% Completed) | 87d | 2026-06-07 A | 2026-09-15 A | B6.33 42 11.36 1 SS | 100% |  |  |  |  |  | Labor [21.22 h]; Foreman [10.61 h]; Plumber Helper [10.61 h]; Plumber [10.61 h]; Surveyor [10.61 h]; Surveyor Helper [10.61 h]; less than 1.5 [34.29] | 20,594.21 | 20,594.21 | 0.0175117698005694 | Cons. | Z2 | Storm | Cons | CS.UNSC | UPVC | SUB.C | Ent Rd 02 | Strm |
| B6.33 42 11.36 1 |  | Catch Basin Opening Prep. (68.04% Completed) | 85d | 2026-06-09 A | 2026-09-15 A | B6.33 42 11.35 1 FF+1d | 100% |  |  |  |  |  | Labor [21.22 h]; Foreman [10.61 h]; Plumber Helper [10.61 h]; Plumber [10.61 h]; less than 1.5 [8.57] | 5,148.55 | 5,148.55 | 0.00437794245014235 | Cons. | Z2 | Storm | Cons | CS.UNSC | UPVC | SUB.C | Ent Rd 02 | Strm |
| B6.33 42 11.36 1_R |  | Catch Basin Opening Prep.(Rem) | 2d | 2026-10-10 A | 2026-10-21 | B6.33 05 40.01.790 FF, B6.33 42 11.36 1 | 64% | 0.72d | 2026-10-19 | 2026-10-20 | 112.32d |  | Labor [9.97 h]; Foreman [4.98 h]; Plumber Helper [4.98 h]; Plumber [4.98 h]; less than 1.5 [4.03] | 2,418.4 | 1,547.77 | 0.00437794245014235 | Cons. | Z2 | Storm | Cons | CS.UNSC | UPVC | SUB.C | Ent Rd 02 | Strm |
| B6.33 42 11.36 2_R |  | Fittings & Pipe Installation(Rem) | 2d | 2026-10-11 A | 2026-10-21 | B6.33 42 11.36 1_R SS, B6.33 42 11.36 2 | 64% | 0.72d | 2026-10-19 | 2026-10-20 | 112.6d |  | Labor [9.97 h]; Foreman [4.98 h]; Plumber Helper [4.98 h]; Plumber [4.98 h]; Surveyor [4.98 h]; Surveyor Helper [4.98 h]; less than 1.5 [16.11] | 9,673.59 | 6,191.1 | 0.0175117698005694 | Cons. | Z2 | Storm | Cons | CS.UNSC | UPVC | SUB.C | Ent Rd 02 | Strm |
|  | Potable Water | **Potable Water Network** |  | 2026-04-20 | 2026-12-10 |  |  |  |  |  |  |  |  |  |  |  |  |  |  |  |  |  |  |  |  |
|  | HDPE | **HDPE Pipes** |  | 2026-05-05 | 2026-05-24 |  |  |  |  |  |  |  |  |  |  |  |  |  |  |  |  |  |  |  |  |
|  | ?110mm | **?110mm** |  | 2026-05-05 | 2026-05-24 |  |  |  |  |  |  |  |  |  |  |  |  |  |  |  |  |  |  |  |  |
|  | Depth: 1.51m - 2.5m | **Depth: 1.51m - 2.5m** |  | 2026-05-05 | 2026-05-24 |  |  |  |  |  |  |  |  |  |  |  |  |  |  |  |  |  |  |  |  |
| B3.33 14 13.01.02 1 |  | Excavation | 5d | 2026-05-05 A | 2026-05-11 A | B3.33 14 13.02.22 | 100% |  |  |  |  |  | Labor [28.35 h]; Foreman [14.17 h]; Operator [28.35 h]; Surveyor [14.17 h]; Surveyor Helper [14.17 h]; Excavator (With Bucket) [16 h]; Water Tanker [16 h]; Dump Truck [16 h]; Plate Compactor [16 h]; Depth: 1.51m - 2.5m |  |  | 0.000145557831170628 | Cons. | Z2 | Potable | Cons | CS.UNSC | HDPEs | SUB.C | Ent Rd 02 | Pot |
| B3.33 14 13.01.02 2 |  | Sand Bedding | 3d | 2026-05-12 A | 2026-05-16 A | B3.33 14 13.01.02 1 | 100% |  |  |  |  |  | Labor [28.35 h]; Foreman [14.17 h]; Operator [56.7 h]; Surveyor [14.17 h]; Surveyor Helper [14.17 h]; Loader [16 h]; Water Tanker [16 h]; Dump Truck [16 h]; Plate Compactor [16 h]; Depth: 1.51m - 2.5m |  |  | 3.61452332437126E-005 | Cons. | Z2 | Potable | Cons | CS.UNSC | HDPEs | SUB.C | Ent Rd 02 | Pot |
| B3.33 14 13.01.02 3 |  | Pipe Laying | 1d | 2026-05-16 A | 2026-05-17 A | B3.33 14 13.01.02 2 | 100% |  |  |  |  |  | Labor [28.35 h]; Foreman [14.17 h]; Plumber Helper [14.17 h]; Plumber [14.17 h]; Operator [14.17 h]; Surveyor [14.17 h]; Surveyor Helper [14.17 h]; Mobile Crane [16 h]; Depth: 1.51m - 2.5m |  |  | 0.000327260895584966 | Cons. | Z2 | Potable | Cons | CS.UNSC | HDPEs | SUB.C | Ent Rd 02 | Pot |
| B3.33 14 13.01.02 4 |  | Embedment & Test | 1d | 2026-05-17 A | 2026-05-18 A | B3.33 14 13.01.02 3, B3.33 14 19.01.108 | 100% |  |  |  |  |  | Labor [56.7 h]; Foreman [28.35 h]; Plumber Helper [28.35 h]; Plumber [28.35 h]; Operator [56.7 h]; Surveyor [28.35 h]; Surveyor Helper [28.35 h]; Loader [32 h]; Water Tanker [32 h]; Dump Truck [32 h]; Plate Compactor [32 h]; Roller Compactor [32 h]; Depth: 1.51m - 2.5m |  |  | 0.000145557831170628 | Cons. | Z2 | Potable | Cons | CS.UNSC | HDPEs | SUB.C | Ent Rd 02 | Pot |
| B3.33 14 13.01.02 5 |  | Backfilling & Warrning Tape | 5.45d | 2026-05-18 A | 2026-05-24 A | B3.33 14 13.01.02 4 | 100% |  |  |  |  |  | Labor [70.87 h]; Foreman [35.44 h]; Operator [141.75 h]; Surveyor [35.44 h]; Surveyor Helper [35.44 h]; Loader [40 h]; Water Tanker [40 h]; Dump Truck [40 h]; Plate Compactor [40 h]; Roller Compactor [40 h]; Depth: 1.51m - 2.5m |  |  | 7.27789155853129E-005 | Cons. | Z2 | Potable | Cons | CS.UNSC | HDPEs | SUB.C | Ent Rd 02 | Pot |
|  | Crossing | **Plots and Buildings Crossing** |  | 2026-11-09 | 2026-11-28 |  |  |  |  |  |  |  |  |  |  |  |  |  |  |  |  |  |  |  |  |
| B3.33 14 13.02.011 |  | Earthwork | 7d | 2026-11-09 | 2026-11-16 | B3.33 14 13.01.02 1, B3.33 14 13.02.16 |  |  |  |  | 69.32d | 0d | Labor [93.55 h]; Foreman [46.78 h]; Operator [93.55 h]; Surveyor [46.78 h]; Surveyor Helper [46.78 h]; Excavator (With Bucket) [48 h]; Water Tanker [48 h]; Dump Truck [48 h]; Plate Compactor [48 h]; Potable Plots and Buildings Crossing Connections Dia. 110 mm [0.6] | 268.67 |  | 0.000135073084407666 | Cons. | Z2 | Potable | Cons | CS.UNSC |  | SUB.C | Ent Rd 02 | Pot |
| B3.33 14 13.02.012 |  | Sand Bedding | 3d | 2026-11-17 | 2026-11-19 | B3.33 14 13.02.011 |  |  |  |  | 80.32d | 0d | Labor [31.18 h]; Foreman [15.59 h]; Operator [62.37 h]; Surveyor [15.59 h]; Surveyor Helper [15.59 h]; Loader [16 h]; Water Tanker [16 h]; Dump Truck [16 h]; Plate Compactor [16 h]; Potable Plots and Buildings Crossing Connections Dia. 110 mm [0.6] | 268.67 |  | 0.000135073084407666 | Cons. | Z2 | Potable | Cons | CS.UNSC |  | SUB.C | Ent Rd 02 | Pot |
| B3.33 14 13.02.013 |  | Tee, Pipe (Crossing) Installation & Backfilling | 7d | 2026-11-21 | 2026-11-28 | B3.33 14 13.02.012, B3.33 14 13.02.27 |  |  |  |  | 80.32d | 0d | Labor [93.55 h]; Foreman [46.78 h]; Plumber Helper [46.78 h]; Plumber [46.78 h]; Operator [93.55 h]; Surveyor [46.78 h]; Surveyor Helper [46.78 h]; Mobile Crane [48 h]; Potable Plots and Buildings Crossing Connections Dia. 110 mm [1.8] | 806.01 |  | 0.000405219253223001 | Cons. | Z2 | Potable | Cons | CS.UNSC |  | SUB.C | Ent Rd 02 | Pot |

| ID | WBS | Activity | Duration | Start | Finish | Predecessors | Complete | Total float | Free float | Resources | Cost | Actual cost | Weight % | DMM2 Weekly Progress | DMM2 Zones | Networks & Stations | DMM2 Phases | UNASCO | Networks Components | Subcontractors works | Dmm2 Roads | Yellow Sheet |
| --- | --- | --- | --- | --- | --- | --- | --- | --- | --- | --- | --- | --- | --- | --- | --- | --- | --- | --- | --- | --- | --- | --- |
|  | Valves & Chambers | **Valves & Chambers** |  | 2026-04-20 | 2026-12-10 |  |  |  |  |  |  |  |  |  |  |  |  |  |  |  |  |  |
|  | GV | **Gate Valves** |  | 2026-04-20 | 2026-11-24 |  |  |  |  |  |  |  |  |  |  |  |  |  |  |  |  |  |
|  | 1 | **Gate valves dia (110) mm** |  | 2026-04-20 | 2026-11-24 |  |  |  |  |  |  |  |  |  |  |  |  |  |  |  |  |  |
| B3.33 14 19.01.108 |  | Burried Isolation Valve Installation | 16d | 2026-04-20 A | 2026-05-09 A | B3.33 14 13.01.02 3 | 100% |  |  | Labor [28.35 h]; Plumber Helper [14.17 h]; Plumber [14.17 h]; Operator [28.35 h]; Boom Truck [16 h]; POT Gate V dia 110 mm [1.65] | 3,825.71 | 3,825.71 | 0.000737657950376926 | Cons. | Z2 | Potable | Cons | CS.UNSC | Val&Chs | SUB.C | Ent Rd 02 | Pot |
| B3.33 14 19.01.109 |  | Spindle & Surface Box | 3d | 2026-11-22 | 2026-11-24 | B3.33 14 19.01.108, B3.33 05 63.01.19, B3.33 14 19.01.115, B3.33 14 19.01.113 |  | 83.32d | 3d | Labor [31.18 h]; Foreman [15.59 h]; Plumber Helper [15.59 h]; Plumber [15.59 h]; Operator [31.18 h]; JCB [16 h]; POT Gate V dia 110 mm [1.1] | 2,550.47 |  | 0.000491771966917951 | Cons. | Z2 | Potable | Cons | CS.UNSC | Val&Chs | SUB.C | Ent Rd 02 | Pot |
|  | Washout Valves | **Washout Valves** |  | 2026-11-17 | 2026-12-10 |  |  |  |  |  |  |  |  |  |  |  |  |  |  |  |  |  |
|  | 4 | **Washout valves on 110-400 mm. (In Chamber)** |  | 2026-11-17 | 2026-12-10 |  |  |  |  |  |  |  |  |  |  |  |  |  |  |  |  |  |
| B3.33 05 63.01.011 |  | Land Adjustment & Compaction | 3d | 2026-11-17 | 2026-11-19 | B3.33 14 13.02.011 |  | 69.32d | 0d | Labor [31.18 h]; Foreman [15.59 h]; Operator [62.37 h]; Surveyor [15.59 h]; Surveyor Helper [15.59 h]; Excavator (With Bucket) [16 h]; Water Tanker [16 h]; Dump Truck [16 h]; Plate Compactor [16 h]; POT Wash out valve Dia. 100 mm on pipes with Dia. 110-400 mm [0.26]; Wash out valve chamber; on 110-400 mm Dia. pipeline [0.26] | 9,985.75 |  | 0.00162096886660874 | Cons. | Z2 | Potable | Cons | CS.UNSC | Val&Chs | SUB.C | Ent Rd 02 | Pot |
| B3.33 05 63.01.012 |  | Foundations | 4d | 2026-11-21 | 2026-11-24 | B3.33 05 63.01.011 |  | 69.32d | 0d | Labor [46.78 h]; Foreman [23.39 h]; Laboratory Officer [23.39 h]; Carpenter [23.39 h]; Steelfixer [23.39 h]; Mason [23.39 h]; POT Wash out valve Dia. 100 mm on pipes with Dia. 110-400 mm [0.35]; Wash out valve chamber; on 110-400 mm Dia. pipeline [0.35] | 13,314.33 |  | 0.002161291822145 | Cons. | Z2 | Potable | Cons | CS.UNSC | Val&Chs | SUB.C | Ent Rd 02 | Pot |
| B3.33 05 63.01.013 |  | Chambers Walls Conc Cast In Situ | 4d | 2026-11-25 | 2026-11-29 | B3.33 05 63.01.012 |  | 69.32d | 0d | Labor [46.78 h]; Foreman [23.39 h]; Laboratory Officer [23.39 h]; Carpenter [23.39 h]; Steelfixer [23.39 h]; Mason [23.39 h]; POT Wash out valve Dia. 100 mm on pipes with Dia. 110-400 mm [0.35]; Wash out valve chamber; on 110-400 mm Dia. pipeline [0.35] | 13,314.33 |  | 0.002161291822145 | Cons. | Z2 | Potable | Cons | CS.UNSC | Val&Chs | SUB.C | Ent Rd 02 | Pot |
| B3.33 05 63.01.014 |  | Chamber Curing, Finishing & Steel Cover | 5d | 2026-11-30 | 2026-12-05 | B3.33 05 63.01.013 |  | 69.32d | 0d | Labor [62.37 h]; Mason [31.18 h]; POT Wash out valve Dia. 100 mm on pipes with Dia. 110-400 mm [0.26]; Wash out valve chamber; on 110-400 mm Dia. pipeline [0.26] | 9,985.75 |  | 0.00162096886660874 | Cons. | Z2 | Potable | Cons | CS.UNSC | Val&Chs | SUB.C | Ent Rd 02 | Pot |
| B3.33 05 63.01.015 |  | Valve & Fitting Installation | 5d | 2026-12-06 | 2026-12-10 | B3.33 05 63.01.014, B3.33 05 63.02.24, B3.33 05 63.01.24 |  | 69.32d |  | Labor [62.37 h]; Plumber Helper [31.18 h]; Plumber [31.18 h]; Operator [62.37 h]; Boom Truck [32 h]; POT Wash out valve Dia. 100 mm on pipes with Dia. 110-400 mm [0.52]; Wash out valve chamber; on 110-400 mm Dia. pipeline [0.52] | 19,971.49 |  | 0.00324193773321747 | Cons. | Z2 | Potable | Cons | CS.UNSC | Val&Chs | SUB.C | Ent Rd 02 | Pot |
|  | Fire Fighting | **Fire Fighting Network** |  | 2026-06-03 | 2026-11-24 |  |  |  |  |  |  |  |  |  |  |  |  |  |  |  |  |  |
|  | HDPE | **HDPE Pipes** |  | 2026-06-03 | 2026-10-25 |  |  |  |  |  |  |  |  |  |  |  |  |  |  |  |  |  |
|  | ?250mm | **?250mm** |  | 2026-06-03 | 2026-10-25 |  |  |  |  |  |  |  |  |  |  |  |  |  |  |  |  |  |
|  | Depth: 1.51m - 2.5m | **Depth: 1.51m - 2.5m** |  | 2026-06-03 | 2026-10-25 |  |  |  |  |  |  |  |  |  |  |  |  |  |  |  |  |  |
| B3.1. 33 14 13.01 1 |  | Excavation (89.00% Completed) | 89.62d | 2026-06-03 A | 2026-09-15 A | B3.1. 33 14 13.22 SS | 100% |  |  | Labor [27.75 h]; Foreman [13.88 h]; Operator [27.75 h]; Surveyor [13.88 h]; Surveyor Helper [13.88 h]; Excavator (With Bucket) [14.24 h]; Water Tanker [14.24 h]; Dump Truck [14.24 h]; Plate Compactor [14.24 h]; Depth: 1.51m - 2.5m [7.32] | 3,822.23 | 3,822.23 | 0.000399426118713958 | Cons. | Z2 | Fire | Cons | CS.UNSC | HDPEs | SUB.C | Ent Rd 02 | Fire |
| B3.1. 33 14 13.01 2 |  | Sand Bedding (89.00% Completed) | 83.62d | 2026-06-10 A | 2026-09-15 A | B3.1. 33 14 13.01 1 FF | 100% |  |  | Labor [27.75 h]; Foreman [13.88 h]; Operator [55.51 h]; Surveyor [13.88 h]; Surveyor Helper [13.88 h]; Loader [14.24 h]; Water Tanker [14.24 h]; Dump Truck [14.24 h]; Plate Compactor [14.24 h]; Depth: 1.51m - 2.5m [1.83] | 955.56 | 955.56 | 9.98565296784896E-005 | Cons. | Z2 | Fire | Cons | CS.UNSC | HDPEs | SUB.C | Ent Rd 02 | Fire |
| B3.1. 33 14 13.01 3 |  | Pipe Laying (89.00% Completed) | 77.62d | 2026-06-17 A | 2026-09-15 A | B3.1. 33 14 13.01 2 FF | 100% |  |  | Labor [27.75 h]; Foreman [13.88 h]; Plumber Helper [13.88 h]; Plumber [13.88 h]; Operator [13.88 h]; Surveyor [13.88 h]; Surveyor Helper [13.88 h]; Mobile Crane [14.24 h]; Depth: 1.51m - 2.5m [16.46] | 8,600.03 | 8,600.03 | 0.00089870876710641 | Cons. | Z2 | Fire | Cons | CS.UNSC | HDPEs | SUB.C | Ent Rd 02 | Fire |
| B3.1. 33 14 13.01 4 |  | Embedment & Test (89.00% Completed) | 75.62d | 2026-06-20 A | 2026-09-15 A | B3.1. 33 14 13.01 3 FF, B3.33 14 19.01.124 SS | 100% |  |  | Labor [55.51 h]; Foreman [27.75 h]; Plumber Helper [27.75 h]; Plumber [27.75 h]; Operator [55.51 h]; Surveyor [27.75 h]; Surveyor Helper [27.75 h]; Loader [28.48 h]; Water Tanker [28.48 h]; Dump Truck [28.48 h]; Plate Compactor [28.48 h]; Roller Compactor [28.48 h]; Depth: 1.51m - 2.5m [7.32] | 3,822.23 | 3,822.23 | 0.000399426118713958 | Cons. | Z2 | Fire | Cons | CS.UNSC | HDPEs | SUB.C | Ent Rd 02 | Fire |
| B3.1. 33 14 13.01 5 |  | Backfilling & Warrning Tape (89.00% Completed) | 73.62d | 2026-06-22 A | 2026-09-15 A | B3.1. 33 14 13.01 4 FF | 100% |  |  | Labor [69.39 h]; Foreman [34.69 h]; Operator [138.77 h]; Surveyor [34.69 h]; Surveyor Helper [34.69 h]; Loader [35.6 h]; Water Tanker [35.6 h]; Dump Truck [35.6 h]; Plate Compactor [35.6 h]; Roller Compactor [35.6 h]; Depth: 1.51m - 2.5m [3.66] | 1,911.12 | 1,911.12 | 0.00019971305935698 | Cons. | Z2 | Fire | Cons | CS.UNSC | HDPEs | SUB.C | Ent Rd 02 | Fire |
| B3.1. 33 14 13.01 1_R |  | Excavation(Rem) | 4d | 2026-10-21 | 2026-10-25 | B3.1. 33 14 13.22_R SS, B3.1. 33 14 13.01 1 |  | 83.32d | 0d | Labor [3.43 h]; Foreman [1.72 h]; Operator [3.43 h]; Surveyor [1.72 h]; Surveyor Helper [1.72 h]; Excavator (With Bucket) [1.76 h]; Water Tanker [1.76 h]; Dump Truck [1.76 h]; Plate Compactor [1.76 h]; Depth: 1.51m - 2.5m [0.9] | 472.41 |  | 0.000399426118713958 | Cons. | Z2 | Fire | Cons | CS.UNSC | HDPEs | SUB.C | Ent Rd 02 | Fire |
| B3.1. 33 14 13.01 2_R |  | Sand Bedding(Rem) | 4d | 2026-10-21 | 2026-10-25 | B3.1. 33 14 13.01 1_R FF, B3.1. 33 14 13.01 2 |  | 83.32d | 0d | Labor [3.43 h]; Foreman [1.72 h]; Operator [6.86 h]; Surveyor [1.72 h]; Surveyor Helper [1.72 h]; Loader [1.76 h]; Water Tanker [1.76 h]; Dump Truck [1.76 h]; Plate Compactor [1.76 h]; Depth: 1.51m - 2.5m [0.23] | 118.1 |  | 9.98565296784896E-005 | Cons. | Z2 | Fire | Cons | CS.UNSC | HDPEs | SUB.C | Ent Rd 02 | Fire |
| B3.1. 33 14 13.01 3_R |  | Pipe Laying(Rem) | 4d | 2026-10-21 | 2026-10-25 | B3.1. 33 14 13.01 2_R FF, B3.1. 33 14 13.01 3 |  | 83.32d | 0d | Labor [3.43 h]; Foreman [1.72 h]; Plumber Helper [1.72 h]; Plumber [1.72 h]; Operator [1.72 h]; Surveyor [1.72 h]; Surveyor Helper [1.72 h]; Mobile Crane [1.76 h]; Depth: 1.51m - 2.5m [2.03] | 1,062.92 |  | 0.00089870876710641 | Cons. | Z2 | Fire | Cons | CS.UNSC | HDPEs | SUB.C | Ent Rd 02 | Fire |
| B3.1. 33 14 13.01 4_R |  | Embedment & Test(Rem) | 4d | 2026-10-21 | 2026-10-25 | B3.1. 33 14 13.01 3_R FF, B3.33 14 19.01.124_R SS, B3.1. 33 14 13.01 4 |  | 83.32d | 0d | Labor [6.86 h]; Foreman [3.43 h]; Plumber Helper [3.43 h]; Plumber [3.43 h]; Operator [6.86 h]; Surveyor [3.43 h]; Surveyor Helper [3.43 h]; Loader [3.52 h]; Water Tanker [3.52 h]; Dump Truck [3.52 h]; Plate Compactor [3.52 h]; Roller Compactor [3.52 h]; Depth: 1.51m - 2.5m [0.9] | 472.41 |  | 0.000399426118713958 | Cons. | Z2 | Fire | Cons | CS.UNSC | HDPEs | SUB.C | Ent Rd 02 | Fire |
| B3.1. 33 14 13.01 5_R |  | Backfilling & Warrning Tape(Rem) | 4d | 2026-10-21 | 2026-10-25 | B3.1. 33 14 13.01 4_R FF, B3.1. 33 14 13.01 5 |  | 103.32d | 20d | Labor [8.58 h]; Foreman [4.29 h]; Operator [17.15 h]; Surveyor [4.29 h]; Surveyor Helper [4.29 h]; Loader [4.4 h]; Water Tanker [4.4 h]; Dump Truck [4.4 h]; Plate Compactor [4.4 h]; Roller Compactor [4.4 h]; Depth: 1.51m - 2.5m [0.45] | 236.21 |  | 0.00019971305935698 | Cons. | Z2 | Fire | Cons | CS.UNSC | HDPEs | SUB.C | Ent Rd 02 | Fire |

| ID | WBS | Activity | Duration | Start | Finish | Predecessors | Complete | Total float | Free float | Resources | Cost | Actual cost | Weight % | DMM2 Weekly Progress | DMM2 Zones | Networks & Stations | DMM2 Phases | UNASCO | Networks Components | Subcontractors works | Dmm2 Roads | Yellow Sheet | All Electrical Scope |
| --- | --- | --- | --- | --- | --- | --- | --- | --- | --- | --- | --- | --- | --- | --- | --- | --- | --- | --- | --- | --- | --- | --- | --- |
|  | Valves & Chambers | **Valves & Chambers** |  | 2026-06-17 | 2026-11-24 |  |  |  |  |  |  |  |  |  |  |  |  |  |  |  |  |  |  |
|  | GV | **Gate Valves** |  | 2026-06-17 | 2026-11-08 |  |  |  |  |  |  |  |  |  |  |  |  |  |  |  |  |  |  |
|  | 1 | **Gate valves dia (250) mm** |  | 2026-06-17 | 2026-11-08 |  |  |  |  |  |  |  |  |  |  |  |  |  |  |  |  |  |  |
| B3.33 14 19.01.124 |  | Burried Isolation Valve Installation (86.00% Completed) | 77.62d | 2026-06-17 A | 2026-09-15 A | B3.1. 33 14 13.01 3 SS | 100% |  |  | Labor [26.82 h]; Plumber Helper [13.41 h]; Plumber [13.41 h]; Operator [26.82 h]; Boom Truck [13.76 h]; FF Gate V dia 250 mm [1.61] | 6,472.08 | 6,472.08 | 0.00144335522534034 | Cons. | Z2 | Fire | Cons | CS.UNSC | Val&Chs | SUB.C | Ent Rd 02 | Fire |  |
| B3.33 14 19.01.124_R |  | Burried Isolation Valve Installation(Rem) | 4d | 2026-10-21 | 2026-10-25 | B3.1. 33 14 13.01 3_R SS, B3.33 14 19.01.124 |  | 83.32d | 0d | Labor [4.37 h]; Plumber Helper [2.18 h]; Plumber [2.18 h]; Operator [4.37 h]; Boom Truck [2.24 h]; FF Gate V dia 250 mm [0.26] | 1,053.59 |  | 0.00144335522534034 | Cons. | Z2 | Fire | Cons | CS.UNSC | Val&Chs | SUB.C | Ent Rd 02 | Fire |  |
| B3.33 14 19.01.125 |  | Spindle & Surface Box | 4d | 2026-11-04 | 2026-11-08 | B3.33 14 19.01.124_R, B3.33 14 19.01.123 |  | 77.32d | 0d | Labor [31.18 h]; Foreman [15.59 h]; Plumber Helper [15.59 h]; Plumber [15.59 h]; Operator [31.18 h]; JCB [16 h]; FF Gate V dia 250 mm [1.25] | 5,017.11 |  | 0.000962236816893557 | Cons. | Z2 | Fire | Cons | CS.UNSC | Val&Chs | SUB.C | Ent Rd 02 | Fire |  |
|  | Washout Valves | **Washout Valves** |  | 2026-10-26 | 2026-11-24 |  |  |  |  |  |  |  |  |  |  |  |  |  |  |  |  |  |  |
|  | 4 | **Washout valves on 110-400 mm. (In Chamber)** |  | 2026-10-26 | 2026-11-24 |  |  |  |  |  |  |  |  |  |  |  |  |  |  |  |  |  |  |
| B3.33 05 63.01.42 |  | Land Adjustment & Compaction | 4d | 2026-10-26 | 2026-10-29 | B3.1. 33 14 13.01 4_R |  | 83.32d | 0d | Labor [31.18 h]; Foreman [15.59 h]; Operator [62.37 h]; Surveyor [15.59 h]; Surveyor Helper [15.59 h]; Excavator (With Bucket) [16 h]; Water Tanker [16 h]; Dump Truck [16 h]; Plate Compactor [16 h]; FF Wash out valve Dia. 100 mm on pipes with Dia. 110-400 mm [0.19]; FF Wash out valve chamber; on 110-400 mm Dia. pipeline [0.21] | 7,932 |  | 0.00140430274510935 | Cons. | Z2 | Fire | Cons | CS.UNSC | Val&Chs | SUB.C | Ent Rd 02 | Fire |  |
| B3.33 05 63.01.40 |  | Foundations | 5d | 2026-10-31 | 2026-11-04 | B3.33 05 63.01.42 |  | 83.32d | 0d | Labor [46.78 h]; Foreman [23.39 h]; Laboratory Officer [23.39 h]; Carpenter [23.39 h]; Steelfixer [23.39 h]; Mason [23.39 h]; FF Wash out valve Dia. 100 mm on pipes with Dia. 110-400 mm [0.19]; FF Wash out valve chamber; on 110-400 mm Dia. pipeline [0.26] | 9,649.37 |  | 0.00179441315636236 | Cons. | Z2 | Fire | Cons | CS.UNSC | Val&Chs | SUB.C | Ent Rd 02 | Fire |  |
| B3.33 05 63.01.43 |  | Chambers Walls Conc Cast In Situ | 5d | 2026-11-05 | 2026-11-10 | B3.33 05 63.01.40 |  | 83.32d | 0d | Labor [46.78 h]; Foreman [23.39 h]; Laboratory Officer [23.39 h]; Carpenter [23.39 h]; Steelfixer [23.39 h]; Mason [23.39 h]; FF Wash out valve Dia. 100 mm on pipes with Dia. 110-400 mm [0.25]; FF Wash out valve chamber; on 110-400 mm Dia. pipeline [0.26] | 9,870.62 |  | 0.00183639589745068 | Cons. | Z2 | Fire | Cons | CS.UNSC | Val&Chs | SUB.C | Ent Rd 02 | Fire |  |
| B3.33 05 63.01.41 |  | Chamber Curing, Finishing & Steel Cover | 6d | 2026-11-11 | 2026-11-17 | B3.33 05 63.01.43, B3.1. 33 14 13.26_R |  | 83.32d | 0d | Labor [62.37 h]; Mason [31.18 h]; FF Wash out valve Dia. 100 mm on pipes with Dia. 110-400 mm [0.25]; FF Wash out valve chamber; on 110-400 mm Dia. pipeline [0.19] | 7,621.88 |  | 0.00144628548619767 | Cons. | Z2 | Fire | Cons | CS.UNSC | Val&Chs | SUB.C | Ent Rd 02 | Fire |  |
| B3.33 05 63.01.44 |  | Valve & Fitting Installation | 6d | 2026-11-18 | 2026-11-24 | B3.33 05 63.01.41, B3.1. 33 14 13.01 5_R, B3.33 05 63.02.54, B3.33 05 63.01.49, B3.1. 33 14 13-01102, B3.1. 33 14 13-01100, B3.33 14 19.01.132 |  | 83.32d | 0d | Labor [62.37 h]; Plumber Helper [31.18 h]; Plumber [31.18 h]; Operator [62.37 h]; Boom Truck [32 h]; FF Wash out valve Dia. 100 mm on pipes with Dia. 110-400 mm [0.39]; FF Wash out valve chamber; on 110-400 mm Dia. pipeline [0.39] | 14,801.26 |  | 0.00280860549021868 | Cons. | Z2 | Fire | Cons | CS.UNSC | Val&Chs | SUB.C | Ent Rd 02 | Fire |  |
|  | 3 | **Fire Hydrant** |  | 2026-10-26 | 2026-11-12 |  |  |  |  |  |  |  |  |  |  |  |  |  |  |  |  |  |  |
| B3.33 14 19.01.fh23 |  | Riser Pipe & Flanged Fittings Installation | 4d | 2026-10-26 | 2026-10-29 | B3.1. 33 14 13.01 3_R |  | 86.32d | 0d | Labor [31.18 h]; Plumber Helper [15.59 h]; Welder [15.59 h]; Plumber [15.59 h]; Surveyor [15.59 h]; Surveyor Helper [15.59 h]; Welding Machine [16 h]; 3-outlet fire hydrant (2 x 2.5 inch and 1 x 4.5 inch) in the form of a separate dry vacuum cylinder [1.49] | 16,415.29 |  | 0.00314407764631429 | Cons. | Z2 | Fire | Cons | CS.UNSC | FH | SUB.C | Ent Rd 02 | Fire |  |
| B3.33 14 19.01.fh22 |  | Firehydrant Fixing/Installation | 5d | 2026-10-31 | 2026-11-04 | B3.33 14 19.01.fh23 |  | 86.32d | 0d | Labor [46.78 h]; Foreman [23.39 h]; Plumber Helper [23.39 h]; Plumber [23.39 h]; Operator [46.78 h]; Surveyor [23.39 h]; Surveyor Helper [23.39 h]; JCB [24 h]; 3-outlet fire hydrant (2 x 2.5 inch and 1 x 4.5 inch) in the form of a separate dry vacuum cylinder [4.47] | 49,245.86 |  | 0.0094322329389428 | Cons. | Z2 | Fire | Cons | CS.UNSC | FH | SUB.C | Ent Rd 02 | Fire |  |
| B3.33 14 19.01.fh24 |  | Backfilling & Compaction | 7d | 2026-11-05 | 2026-11-12 | B3.33 14 19.01.fh22 |  | 86.32d | 0d | Labor [77.96 h]; Foreman [38.98 h]; Operator [77.96 h]; Surveyor [38.98 h]; Surveyor Helper [38.98 h]; Loader [40 h]; Water Tanker [40 h]; Dump Truck [40 h]; Plate Compactor [40 h]; 3-outlet fire hydrant (2 x 2.5 inch and 1 x 4.5 inch) in the form of a separate dry vacuum cylinder [1.49] | 16,415.29 |  | 0.00314407764631429 | Cons. | Z2 | Fire | Cons | CS.UNSC | FH | SUB.C | Ent Rd 02 | Fire |  |
|  | Dry Networks | **Dry Networks** |  | 2026-10-22 | 2026-12-05 |  |  |  |  |  |  |  |  |  |  |  |  |  |  |  |  |  |  |
|  | MV | **Medium Voltage Network** |  | 2026-10-22 | 2026-12-01 |  |  |  |  |  |  |  |  |  |  |  |  |  |  |  |  |  |  |
|  | Duct Banks | **Duct Banks** |  | 2026-10-22 | 2026-11-11 |  |  |  |  |  |  |  |  |  |  |  |  |  |  |  |  |  |  |
|  | 4 Way | **2 Way** |  | 2026-10-22 | 2026-11-11 |  |  |  |  |  |  |  |  |  |  |  |  |  |  |  |  |  |  |
| B2.31 23 00.638 |  | Excavation | 4d | 2026-10-22 | 2026-10-27 | B6.33 05 40.01.240_R, B6.33 05 40.01.800 |  | 75.82d | 0d | Labor [46.78 h]; Foreman [23.39 h]; Operator [46.78 h]; Surveyor [23.39 h]; Surveyor Helper [23.39 h]; Excavator (With Bucket) [24 h]; Water Tanker [24 h]; Dump Truck [24 h]; Plate Compactor [24 h]; Excavation for Trench size 40cm wide and 80cm deep (for 1 cable) [100]; Duct bank for MV cables UPVC (2xDia. 150mm) [17.08] | 8,056.11 |  | 0.00333826948299228 | Cons. | Z2 | MV | Cons |  | Cbl&Dct | SUB.C | Ent Rd 02 | MV | allElec |
| B2.33 71 00.284 |  | Shuttering, Steel Fixing Incl. UPVC Pipe & Conc. Cast | 7d | 2026-10-27 | 2026-11-04 | B2.31 23 00.638 |  | 75.82d | 0d | Labor [93.55 h]; Laboratory Officer [46.78 h]; Carpenter [46.78 h]; Steelfixer [46.78 h]; Mason [46.78 h]; Surveyor [46.78 h]; Surveyor Helper [46.78 h]; Excavation for Trench size 40cm wide and 80cm deep (for 1 cable) [300]; Duct bank for MV cables UPVC (2xDia. 150mm) [26.39] | 15,770.4 |  | 0.00682834169058518 | Cons. | Z2 | MV | Cons |  | Cbl&Dct | SUB.C | Ent Rd 02 | MV | allElec |
| B2.33 71 00.285 |  | Backfilling & Warrning Tape | 6d | 2026-11-04 | 2026-11-11 | B2.33 71 00.284 |  | 75.82d | 0d | Labor [77.96 h]; Foreman [38.98 h]; Operator [155.92 h]; Surveyor [38.98 h]; Surveyor Helper [38.98 h]; Loader [40 h]; Water Tanker [40 h]; Dump Truck [40 h]; Plate Compactor [40 h]; Roller Compactor [40 h]; Excavation for Trench size 40cm wide and 80cm deep (for 1 cable) [100]; Duct bank for MV cables UPVC (2xDia. 150mm) [17.08] | 8,056.11 |  | 0.00333826948299228 | Cons. | Z2 | MV | Cons |  | Cbl&Dct | SUB.C | Ent Rd 02 | MV | allElec |

| ID | WBS | Activity | Duration | Start | Finish | Predecessors | Total float | Free float | Resources | Cost | Weight % | DMM2 Weekly Progress | DMM2 Zones | Networks & Stations | DMM2 Phases | Networks Components | All Electrical Scope | Subcontractors works | Dmm2 Roads | Yellow Sheet |
| --- | --- | --- | --- | --- | --- | --- | --- | --- | --- | --- | --- | --- | --- | --- | --- | --- | --- | --- | --- | --- |
|  | Cables | **Cables** |  | 2026-11-21 | 2026-12-01 |  |  |  |  |  |  |  |  |  |  |  |  |  |  |  |
|  | 3C,500mm2 | **3C,500mm2** |  | 2026-11-21 | 2026-12-01 |  |  |  |  |  |  |  |  |  |  |  |  |  |  |  |
| B2.33 71 49.23.71 |  | Cable 13.8 kV Unarmored | 4d | 2026-11-21 | 2026-11-24 | B2.33 71 00 01 9 SS | 68.32d | 0d | Labor [46.78 h]; Foreman [23.39 h]; Operator [46.78 h]; Boom Truck [24 h]; Electrician [23.39 h]; Cable 13.8 kV 3Cx 500 mm² Al XLPE,/LLDPE / Unarmored [681.79] | 234,058.34 | 0.0447374191430308 | Cons. | Z2 | MV | Cons | Cbl&Dct | allElec | SUB.C | Ent Rd 02 | MV |
| B2.33 71 49.23.72 |  | Straight joints cables | 3d | 2026-11-25 | 2026-11-28 | B2.33 71 49.23.71 | 68.32d | 0d | Labor [31.18 h]; Foreman [15.59 h]; Electrician [15.59 h]; Straight joints cables for 13.8 kv 3Cx 500 mm², Al /XLPE/LLDPE [2] | 7,880.95 | 0.00396214380929156 | Cons. | Z2 | MV | Cons | Cbl&Dct | allElec | SUB.C | Ent Rd 02 | MV |
| B2.33 71 49.23.73 |  | Cable Termination | 3d | 2026-11-29 | 2026-12-01 | B2.33 71 49.23.72 | 68.32d | 0d | Labor [31.18 h]; Foreman [15.59 h]; Electrician [15.59 h]; Cable Termination for 13.8 kv 3Cx 500 mm², Al /XLPE/LLDPE [0.91] | 3,058.5 | 0.00153766139892947 | Cons. | Z2 | MV | Cons | Cbl&Dct | allElec | SUB.C | Ent Rd 02 | MV |
|  | LV Network | **Low Voltage Network** |  | 2026-11-21 | 2026-11-24 |  |  |  |  |  |  |  |  |  |  |  |  |  |  |  |
|  | Cables | **Cables** |  | 2026-11-21 | 2026-11-24 |  |  |  |  |  |  |  |  |  |  |  |  |  |  |  |
|  | 4C,10+1C,10mm2 | **4C,10+1C,10mm2** |  | 2026-11-21 | 2026-11-24 |  |  |  |  |  |  |  |  |  |  |  |  |  |  |  |
| B2.33 71 00 01 9 |  | Cable Pulling | 4d | 2026-11-21 | 2026-11-24 | B2.33 71 49.23.132 | 68.32d | 0d | Labor [62.37 h]; Foreman [31.18 h]; Surveyor [31.18 h]; Surveyor Helper [31.18 h]; Electrician [31.18 h]; Cable, Copper 4x10mm2/ CU/XLPE/SWA/PVC + 1x10mm2 CU/PVC [1535.57] | 95,724.21 | 0.0182958037285517 | Cons. | Z2 | LV | Cons | Cbl&Dct | allElec | SUB.C | Ent Rd 02 | LV |
|  | Street Lighting | **Street Lighting** |  | 2026-10-26 | 2026-11-23 |  |  |  |  |  |  |  |  |  |  |  |  |  |  |  |
|  | Duct Banks | **Duct Banks** |  | 2026-11-11 | 2026-11-22 |  |  |  |  |  |  |  |  |  |  |  |  |  |  |  |
|  | 2 Way | **2 Way** |  | 2026-11-11 | 2026-11-22 |  |  |  |  |  |  |  |  |  |  |  |  |  |  |  |
| B2.33 71 00 02 58 |  | Excavation | 2d | 2026-11-11 | 2026-11-14 | B2.33 71 00.285 | 75.82d | 0d | Labor [31.18 h]; Foreman [15.59 h]; Operator [31.18 h]; Surveyor [15.59 h]; Surveyor Helper [15.59 h]; Excavator (With Bucket) [16 h]; Water Tanker [16 h]; Dump Truck [16 h]; Plate Compactor [16 h]; SL Excavation for Trench size 40cm wide and 65cm deep (for 1 cable); Road Crossing Duct for Street Lighting cables UPVC (2xDia. 110mm) [33.4] | 9,208.14 | 0.0034843117378167 | Cons. | Z2 | SL | Cons | Cables | allElec | SUB.C | Ent Rd 02 | SL |
| B2.33 71 00 02 59 |  | Shuttering, Steel Fixing Incl. UPVC Pipe & Conc. Cast | 4d | 2026-11-14 | 2026-11-18 | B2.33 71 00 02 58 | 75.82d | 0d | Labor [62.37 h]; Laboratory Officer [31.18 h]; Carpenter [31.18 h]; Steelfixer [31.18 h]; Mason [31.18 h]; Surveyor [31.18 h]; Surveyor Helper [31.18 h]; SL Excavation for Trench size 40cm wide and 65cm deep (for 1 cable); Road Crossing Duct for Street Lighting cables UPVC (2xDia. 110mm) [100.2] | 27,624.41 | 0.0104529352134501 | Cons. | Z2 | SL | Cons | Cables | allElec | SUB.C | Ent Rd 02 | SL |
| B2.33 71 00 02 60 |  | Backfilling & Warrning Tape | 3d | 2026-11-18 | 2026-11-22 | B2.33 71 00 02 59, B2.33 71 00 02 87_R | 75.82d | 0d | Labor [62.37 h]; Foreman [31.18 h]; Operator [124.74 h]; Surveyor [31.18 h]; Surveyor Helper [31.18 h]; Loader [32 h]; Water Tanker [32 h]; Dump Truck [32 h]; Plate Compactor [32 h]; Roller Compactor [32 h]; SL Excavation for Trench size 40cm wide and 65cm deep (for 1 cable); Road Crossing Duct for Street Lighting cables UPVC (2xDia. 110mm) [33.4] | 9,208.14 | 0.0034843117378167 | Cons. | Z2 | SL | Cons | Cables | allElec | SUB.C | Ent Rd 02 | SL |
|  | Drawpits | **Drawpits** |  | 2026-11-14 | 2026-11-21 |  |  |  |  |  |  |  |  |  |  |  |  |  |  |  |
| B2.33 71 00 02 61 |  | Excavation | 2d | 2026-11-14 | 2026-11-16 | B2.33 71 00 02 58 | 76.82d | 0d | Labor [31.18 h]; Foreman [15.59 h]; Operator [31.18 h]; Surveyor [15.59 h]; Surveyor Helper [15.59 h]; Excavator (With Bucket) [16 h]; Water Tanker [16 h]; Dump Truck [16 h]; Plate Compactor [16 h]; Drawpit with medium duty steel cover, size600x600x900mm, [2.43] | 14,384.57 | 0.0025348715507172 | Cons. | Z2 | SL | Cons | Cables | allElec | SUB.C | Ent Rd 02 | SL |
| B2.33 71 00 02 62 |  | Drawpits Installation | 2d | 2026-11-16 | 2026-11-18 | B2.33 71 00 02 61 | 76.82d | 0d | Labor [31.18 h]; Laboratory Officer [15.59 h]; Carpenter [15.59 h]; Steelfixer [15.59 h]; Mason [15.59 h]; Surveyor [15.59 h]; Surveyor Helper [15.59 h]; Drawpit with medium duty steel cover, size600x600x900mm, [7.28] | 43,153.72 | 0.0076046146521516 | Cons. | Z2 | SL | Cons | Cables | allElec | SUB.C | Ent Rd 02 | SL |
| B2.33 71 00 02 63 |  | Backfilling & Warrning Tape | 2d | 2026-11-18 | 2026-11-21 | B2.33 71 00 02 62 | 76.82d | 1d | Labor [31.18 h]; Foreman [15.59 h]; Operator [62.37 h]; Surveyor [15.59 h]; Surveyor Helper [15.59 h]; Loader [16 h]; Water Tanker [16 h]; Dump Truck [16 h]; Plate Compactor [16 h]; Roller Compactor [16 h]; Drawpit with medium duty steel cover, size600x600x900mm, [2.43] | 14,384.57 | 0.0025348715507172 | Cons. | Z2 | SL | Cons | Cables | allElec | SUB.C | Ent Rd 02 | SL |
|  | Cables | **Cables** |  | 2026-11-11 | 2026-11-23 |  |  |  |  |  |  |  |  |  |  |  |  |  |  |  |
|  | 4C,10+1C,10mm2 | **4C,10+1C,10mm2** |  | 2026-11-11 | 2026-11-23 |  |  |  |  |  |  |  |  |  |  |  |  |  |  |  |
| B2.33 71 19 102 |  | Land Adjustment | 3d | 2026-11-11 | 2026-11-14 | B2.33 71 16.46 | 68.32d | 0d | Labor [46.78 h]; Foreman [23.39 h]; Operator [31.18 h]; Surveyor [7.8 h]; Surveyor Helper [7.8 h]; Excavator (With Bucket) [24 h]; Water Tanker [24 h]; Dump Truck [24 h]; Roller Compactor [24 h]; SL Cable, Copper 4x10mm2/ CU/XLPE/SWA/PVC + 1x10mm2 CU/PVC [416.5] | 25,963.96 | 0.00496258855349975 | Cons. | Z2 | SL | Cons | Cables | allElec | SUB.C | Ent Rd 02 | SL |
| B2.33 71 49.23.132 |  | Cable Pulling | 5d | 2026-11-15 | 2026-11-19 | B2.33 71 19 102 | 68.32d | 0d | Labor [77.96 h]; Foreman [38.98 h]; Surveyor [38.98 h]; Surveyor Helper [38.98 h]; Electrician [38.98 h]; SL Cable, Copper 4x10mm2/ CU/XLPE/SWA/PVC + 1x10mm2 CU/PVC [1249.49] | 77,890.96 | 0.0148875878281853 | Cons. | Z2 | SL | Cons | Cables | allElec | SUB.C | Ent Rd 02 | SL |
| B2.33 71 19 112 |  | Backfilling | 3d | 2026-11-21 | 2026-11-23 | B2.33 71 49.23.132, B2.33 71 19 72 | 80.32d | 17d | Labor [93.55 h]; Foreman [46.78 h]; Operator [93.55 h]; Surveyor [46.78 h]; Surveyor Helper [46.78 h]; Loader [48 h]; Water Tanker [48 h]; Dump Truck [48 h]; Plate Compactor [48 h]; SL Cable, Copper 4x10mm2/ CU/XLPE/SWA/PVC + 1x10mm2 CU/PVC [416.5] | 25,963.96 | 0.00496258855349975 | Cons. | Z2 | SL | Cons | Cables | allElec | SUB.C | Ent Rd 02 | SL |

| ID | WBS | Activity | Duration | Start | Finish | Predecessors | Total float | Free float | Resources | Cost | Weight % | DMM2 Weekly Progress | DMM2 Zones | Networks & Stations | DMM2 Phases | Networks Components | All Electrical Scope | Subcontractors works | Dmm2 Roads | Yellow Sheet |
| --- | --- | --- | --- | --- | --- | --- | --- | --- | --- | --- | --- | --- | --- | --- | --- | --- | --- | --- | --- | --- |
|  | SL Poles | **SL Poles** |  | 2026-10-26 | 2026-11-16 |  |  |  |  |  |  |  |  |  |  |  |  |  |  |  |
|  | Pole (10 M Sngl Arm) | **Pole (10 M Single Arm)** |  | 2026-10-26 | 2026-11-10 |  |  |  |  |  |  |  |  |  |  |  |  |  |  |  |
| B2.33 71 16.43 |  | Excavation | 2d | 2026-10-26 | 2026-10-27 | B1.2.32 11 26.01.5 | 64.32d | 0d | Labor [31.18 h]; Foreman [15.59 h]; Operator [31.18 h]; Surveyor [15.59 h]; Surveyor Helper [15.59 h]; Excavator (With Bucket) [16 h]; Dump Truck [16 h]; Lighting poles with 1 arm, height of ( 10) meters [6.6] | 58,898.5 | 0.0112471278804954 | Cons. | Z2 | SL | Cons | Pls&Lmn | allElec | SUB.C | Ent Rd 02 | SL |
| B2.33 71 16.44 |  | PC & RC Foundation | 3d | 2026-10-28 | 2026-10-31 | B2.33 71 16.43 | 68.32d | 0d | Labor [62.37 h]; Foreman [31.18 h]; Laboratory Officer [31.18 h]; Carpenter [31.18 h]; Steelfixer [31.18 h]; Mason [31.18 h]; Lighting poles with 1 arm, height of ( 10) meters [6.6] | 58,898.5 | 0.0112471278804954 | Cons. | Z2 | SL | Cons | Pls&Lmn | allElec | SUB.C | Ent Rd 02 | SL |
| B2.33 71 16.45 |  | Lighting Poles Installation Incl power box, Cables | 3d | 2026-11-01 | 2026-11-03 | B2.33 71 16.44 | 68.32d | 0d | Labor [77.96 h]; Operator [77.96 h]; Mobile Crane [40 h]; Electrician [38.98 h]; Lighting poles with 1 arm, height of ( 10) meters [13.2] | 117,797 | 0.0224942557609906 | Cons. | Z2 | SL | Cons | Pls&Lmn | allElec | SUB.C | Ent Rd 02 | SL |
| B2.26.56.19.4 |  | Lighting Luminares Inst | 3d | 2026-11-04 | 2026-11-07 | B2.33 71 16.45 | 68.32d | 0d | Labor [46.78 h]; Operator [46.78 h]; Manlift [24 h]; Street Lighting( LED), Lamp Lumen: 14560, Luminare Lumen:12700 , complete with control gear and lamp, (80) WATT. [25] | 23,179.2 | 0.0047113256383061 | Cons. | Z2 | SL | Cons | Pls&Lmn | allElec | SUB.C | Ent Rd 02 | SL |
| B2.33 71 16.46 |  | Backfilling, Grouting & Chamfering | 3d | 2026-11-08 | 2026-11-10 | B2.26.56.19.4 | 68.32d | 0d | Labor [77.96 h]; Foreman [38.98 h]; Mason [38.98 h]; Operator [77.96 h]; Surveyor [38.98 h]; Surveyor Helper [38.98 h]; Loader [40 h]; Water Tanker [40 h]; Dump Truck [40 h]; Plate Compactor [40 h]; Lighting poles with 1 arm, height of ( 10) meters [6.6] | 58,898.5 | 0.0112471278804954 | Cons. | Z2 | SL | Cons | Pls&Lmn | allElec | SUB.C | Ent Rd 02 | SL |
|  | Pole (10 M Dbl Arm) | **Pole (10 M Double Arm)** |  | 2026-10-28 | 2026-11-16 |  |  |  |  |  |  |  |  |  |  |  |  |  |  |  |
| B2.33 71 16.47 |  | Excavation | 2d | 2026-10-28 | 2026-10-29 | B2.33 71 16.43 | 64.32d | 0d | Labor [31.18 h]; Foreman [15.59 h]; Operator [31.18 h]; Surveyor [15.59 h]; Surveyor Helper [15.59 h]; Excavator (With Bucket) [16 h]; Dump Truck [16 h]; Lighting poles with 2 arms, height of ( 10) meters [2.01] | 18,488.33 | 0.00352048130754849 | Cons. | Z2 | SL | Cons | Pls&Lmn | allElec | SUB.C | Ent Rd 02 | SL |
| B2.33 71 16.48 |  | PC & RC Foundation | 4d | 2026-10-31 | 2026-11-03 | B2.33 71 16.47 | 64.32d | 0d | Labor [62.37 h]; Foreman [31.18 h]; Laboratory Officer [31.18 h]; Carpenter [31.18 h]; Steelfixer [31.18 h]; Mason [31.18 h]; Lighting poles with 2 arms, height of ( 10) meters [2.01] | 18,488.33 | 0.00352048130754849 | Cons. | Z2 | SL | Cons | Pls&Lmn | allElec | SUB.C | Ent Rd 02 | SL |
| B2.33 71 16.49 |  | Lighting Poles Installation Incl power box, Cables | 3d | 2026-11-04 | 2026-11-07 | B2.33 71 16.48 | 64.32d | 0d | Labor [77.96 h]; Operator [77.96 h]; Mobile Crane [40 h]; Electrician [38.98 h]; Lighting poles with 2 arms, height of ( 10) meters [4.01] | 36,976.66 | 0.00704096261509691 | Cons. | Z2 | SL | Cons | Pls&Lmn | allElec | SUB.C | Ent Rd 02 | SL |
| B2.26.56.19.5 |  | Lighting Luminares Inst | 3d | 2026-11-08 | 2026-11-10 | B2.33 71 16.49 | 64.32d | 0d | Labor [46.78 h]; Operator [46.78 h]; Manlift [24 h]; Street Lighting( LED), Lamp Lumen: 14560, Luminare Lumen:12700 , complete with control gear and lamp, (80) WATT. [25] | 23,179.2 | 0.0047113256383061 | Cons. | Z2 | SL | Cons | Pls&Lmn | allElec | SUB.C | Ent Rd 02 | SL |
| B2.33 71 16.50 |  | Backfilling, Grouting & Chamfering | 5d | 2026-11-11 | 2026-11-16 | B2.26.56.19.5 | 64.32d | 10.32d | Labor [77.96 h]; Foreman [38.98 h]; Mason [38.98 h]; Operator [77.96 h]; Surveyor [38.98 h]; Surveyor Helper [38.98 h]; Loader [40 h]; Water Tanker [40 h]; Dump Truck [40 h]; Plate Compactor [40 h]; Lighting poles with 2 arms, height of ( 10) meters [2.01] | 18,488.33 | 0.00352048130754849 | Cons. | Z2 | SL | Cons | Pls&Lmn | allElec | SUB.C | Ent Rd 02 | SL |
|  | SL Pillars | **SL Pillars** |  | 2026-11-08 | 2026-11-11 |  |  |  |  |  |  |  |  |  |  |  |  |  |  |  |
| B2.33 71 26 031 |  | Pillars Installation (Internal Wiring) | 2d | 2026-11-08 | 2026-11-09 | B2.33 71 16.49, B2.33 71 16.45 | 92.32d | 0d | Labor [93.55 h]; Foreman [46.78 h]; Operator [93.55 h]; Boom Truck [48 h]; Electrician [46.78 h]; Street Lighting Feeder pillars, work shall include earthing for the lighting pillars. [1] | 16,342.35 | 0.00307259119104481 | Cons. | Z2 | SL | Cons |  |  | SUB.C | Ent Rd 02 | SL |
| B2.33 71 26 042 |  | KWH meter mounting a frame installation | 2d | 2026-11-10 | 2026-11-11 | B2.33 71 26 031 | 92.32d | 1d | Labor [93.55 h]; Foreman [46.78 h]; Operator [93.55 h]; Boom Truck [48 h]; Supply and installation of KWH meter mounting a frame only [6] | 52,153.33 | 0.00874002310873136 | Cons. | Z2 | SL | Cons |  |  | SUB.C | Ent Rd 02 | SL |
|  | Telecommunication | **Telecommunication Network** |  | 2026-11-17 | 2026-12-05 |  |  |  |  |  |  |  |  |  |  |  |  |  |  |  |
|  | Ducts | **Ducts** |  | 2026-11-17 | 2026-12-02 |  |  |  |  |  |  |  |  |  |  |  |  |  |  |  |
|  | (6*50mm) | **Size (6*50mm) HDPE ducts** |  | 2026-11-17 | 2026-11-28 |  |  |  |  |  |  |  |  |  |  |  |  |  |  |  |
| B2.1.33 81 26.84 |  | Excavation | 2d | 2026-11-17 | 2026-11-18 | B2.33 71 00.219 | 33.32d | 0d | Labor [46.78 h]; Foreman [23.39 h]; Operator [46.78 h]; Surveyor [23.39 h]; Surveyor Helper [23.39 h]; Excavator (With Bucket) [24 h]; Water Tanker [24 h]; Dump Truck [24 h]; Plate Compactor [24 h]; (6*50mm) HDPE ducts [125.82] | 35,460.35 | 0.00690393952512995 | Cons. | Z2 | Telecom | Cons | DCT&MNH | allElec | SUB.C | Ent Rd 02 | TEL |
| B2.1.33 81 26.85 |  | HDPE Pipe, Shuttering, Steel Fixing & Conc. Cast | 2d | 2026-11-19 | 2026-11-21 | B2.1.33 81 26.84 | 70.32d | 4d | Labor [109.15 h]; Laboratory Officer [54.57 h]; Carpenter [54.57 h]; Steelfixer [54.57 h]; Mason [54.57 h]; Surveyor [54.57 h]; Surveyor Helper [54.57 h]; (6*50mm) HDPE ducts [377.45] | 106,381.04 | 0.0207118185753898 | Cons. | Z2 | Telecom | Cons | DCT&MNH | allElec | SUB.C | Ent Rd 02 | TEL |
| B2.1.33 81 26.86 |  | Backfilling & Warrning Tape | 2d | 2026-11-26 | 2026-11-28 | B2.1.33 81 26.85, B2.1.33 81 26.95, B2.33 71 00.253 | 66.32d | 0d | Labor [77.96 h]; Foreman [38.98 h]; Operator [155.92 h]; Surveyor [38.98 h]; Surveyor Helper [38.98 h]; Loader [40 h]; Water Tanker [40 h]; Dump Truck [40 h]; Plate Compactor [40 h]; Roller Compactor [40 h]; (6*50mm) HDPE ducts [125.82] | 35,460.35 | 0.00690393952512995 | Cons. | Z2 | Telecom | Cons | DCT&MNH | allElec | SUB.C | Ent Rd 02 | TEL |
|  | (6*50mm+2*32mm) | **Size (6*50mm+2*32mm) HDPE ducts** |  | 2026-11-19 | 2026-11-25 |  |  |  |  |  |  |  |  |  |  |  |  |  |  |  |
| B2.1.33 81 26.87 |  | Excavation | 2d | 2026-11-19 | 2026-11-21 | B2.1.33 81 26.84 | 33.32d | 0d | Labor [31.18 h]; Foreman [15.59 h]; Operator [31.18 h]; Surveyor [15.59 h]; Surveyor Helper [15.59 h]; Excavator (With Bucket) [16 h]; Water Tanker [16 h]; Dump Truck [16 h]; Plate Compactor [16 h]; (6*50mm+2*32mm) HDPE ducts [48.51] | 21,251.23 | 0.00243727564627162 | Cons. | Z2 | Telecom | Cons | DCT&MNH | allElec | SUB.C | Ent Rd 02 | TEL |
| B2.1.33 81 26.88 |  | HDPE Pipe, Shuttering, Steel Fixing & Conc. Cast | 2d | 2026-11-22 | 2026-11-23 | B2.1.33 81 26.87 | 66.32d | 0d | Labor [46.78 h]; Laboratory Officer [23.39 h]; Carpenter [23.39 h]; Steelfixer [23.39 h]; Mason [23.39 h]; Surveyor [23.39 h]; Surveyor Helper [23.39 h]; (6*50mm+2*32mm) HDPE ducts [145.49] | 63,742.79 | 0.00731057705386804 | Cons. | Z2 | Telecom | Cons | DCT&MNH | allElec | SUB.C | Ent Rd 02 | TEL |
| B2.1.33 81 26.89 |  | Backfilling & Warrning Tape | 2d | 2026-11-24 | 2026-11-25 | B2.1.33 81 26.88, B2.33 71 00.249 | 66.32d | 0d | Labor [62.37 h]; Foreman [31.18 h]; Operator [124.74 h]; Surveyor [31.18 h]; Surveyor Helper [31.18 h]; Loader [32 h]; Water Tanker [32 h]; Dump Truck [32 h]; Plate Compactor [32 h]; Roller Compactor [32 h]; (6*50mm+2*32mm) HDPE ducts [48.51] | 21,251.23 | 0.00243727564627162 | Cons. | Z2 | Telecom | Cons | DCT&MNH | allElec | SUB.C | Ent Rd 02 | TEL |

| ID | WBS | Activity | Duration | Start | Finish | Predecessors | Total float | Free float | Resources | Cost | Weight % | DMM2 Weekly Progress | DMM2 Zones | Networks & Stations | DMM2 Phases | Networks Components | All Electrical Scope | Subcontractors works | Dmm2 Roads | Yellow Sheet |
| --- | --- | --- | --- | --- | --- | --- | --- | --- | --- | --- | --- | --- | --- | --- | --- | --- | --- | --- | --- | --- |
|  | (2*32mm) | **Size (2*32mm) HDPE ducts** |  | 2026-11-19 | 2026-11-25 |  |  |  |  |  |  |  |  |  |  |  |  |  |  |  |
| B2.1.33 81 26.93 |  | Excavation | 2d | 2026-11-19 | 2026-11-21 | B2.1.33 81 26.87 SS | 33.32d | 0d | Labor [31.18 h]; Foreman [15.59 h]; Operator [31.18 h]; Surveyor [15.59 h]; Surveyor Helper [15.59 h]; Excavator (With Bucket) [16 h]; Water Tanker [16 h]; Dump Truck [16 h]; Plate Compactor [16 h]; (2*32mm) HDPE ducts [8.6] | 1,344.05 | 0.000194889802563824 | Cons. | Z2 | Telecom | Cons | DCT&MNH | allElec | SUB.C | Ent Rd 02 | TEL |
| B2.1.33 81 26.94 |  | HDPE Pipe, Shuttering, Steel Fixing & Conc. Cast | 2d | 2026-11-22 | 2026-11-23 | B2.1.33 81 26.93 | 66.32d | 0d | Labor [31.18 h]; Laboratory Officer [15.59 h]; Carpenter [15.59 h]; Steelfixer [15.59 h]; Mason [15.59 h]; Surveyor [15.59 h]; Surveyor Helper [15.59 h]; (2*32mm) HDPE ducts [25.8] | 4,032.14 | 0.000584669407691468 | Cons. | Z2 | Telecom | Cons | DCT&MNH | allElec | SUB.C | Ent Rd 02 | TEL |
| B2.1.33 81 26.95 |  | Backfilling & Warrning Tape | 2d | 2026-11-24 | 2026-11-25 | B2.1.33 81 26.94, B2.1.33 81 26.89 SS, B2.1.33 81 26.149 | 66.32d | 0d | Labor [46.78 h]; Foreman [23.39 h]; Operator [93.55 h]; Surveyor [23.39 h]; Surveyor Helper [23.39 h]; Loader [24 h]; Water Tanker [24 h]; Dump Truck [24 h]; Plate Compactor [24 h]; Roller Compactor [24 h]; (2*32mm) HDPE ducts [8.6] | 1,344.05 | 0.000194889802563824 | Cons. | Z2 | Telecom | Cons | DCT&MNH | allElec | SUB.C | Ent Rd 02 | TEL |
|  | (4*32mm) | **Size (4*32mm) HDPE ducts** |  | 2026-11-22 | 2026-11-30 |  |  |  |  |  |  |  |  |  |  |  |  |  |  |  |
| B2.1.33 81 26.96 |  | Excavation | 2d | 2026-11-22 | 2026-11-23 | B2.1.33 81 26.93 | 33.32d | 0d | Labor [31.18 h]; Foreman [15.59 h]; Operator [31.18 h]; Surveyor [15.59 h]; Surveyor Helper [15.59 h]; Excavator (With Bucket) [16 h]; Water Tanker [16 h]; Dump Truck [16 h]; Plate Compactor [16 h]; (4*32mm) HDPE ducts [5.13] | 1,099.7 | 0.000169743608400202 | Cons. | Z2 | Telecom | Cons | DCT&MNH | allElec | SUB.C | Ent Rd 02 | TEL |
| B2.1.33 81 26.97 |  | HDPE Pipe, Shuttering, Steel Fixing & Conc. Cast | 2d | 2026-11-24 | 2026-11-25 | B2.1.33 81 26.96 | 68.32d | 2d | Labor [31.18 h]; Laboratory Officer [15.59 h]; Carpenter [15.59 h]; Steelfixer [15.59 h]; Mason [15.59 h]; Surveyor [15.59 h]; Surveyor Helper [15.59 h]; (4*32mm) HDPE ducts [15.4] | 3,299.11 | 0.000509230825200604 | Cons. | Z2 | Telecom | Cons | DCT&MNH | allElec | SUB.C | Ent Rd 02 | TEL |
| B2.1.33 81 26.98 |  | Backfilling & Warrning Tape | 2d | 2026-11-29 | 2026-11-30 | B2.1.33 81 26.97, B2.1.33 81 26.86 | 66.32d | 0d | Labor [46.78 h]; Foreman [23.39 h]; Operator [93.55 h]; Surveyor [23.39 h]; Surveyor Helper [23.39 h]; Loader [24 h]; Water Tanker [24 h]; Dump Truck [24 h]; Plate Compactor [24 h]; Roller Compactor [24 h]; (4*32mm) HDPE ducts [5.13] | 1,099.7 | 0.000169743608400202 | Cons. | Z2 | Telecom | Cons | DCT&MNH | allElec | SUB.C | Ent Rd 02 | TEL |
|  | (6*50mm+6*32mm) | **Size (6*50mm+6*32mm) HDPE ducts** |  | 2026-11-24 | 2026-11-30 |  |  |  |  |  |  |  |  |  |  |  |  |  |  |  |
| B2.1.33 81 26.99 |  | Excavation | 2d | 2026-11-24 | 2026-11-25 | B2.1.33 81 26.96 | 33.32d | 0d | Labor [46.78 h]; Foreman [23.39 h]; Operator [46.78 h]; Surveyor [23.39 h]; Surveyor Helper [23.39 h]; Excavator (With Bucket) [24 h]; Water Tanker [24 h]; Dump Truck [24 h]; Plate Compactor [24 h]; (6*50mm+6*32mm) HDPE ducts [1] | 538.74 | 0.00047345125512784 | Cons. | Z2 | Telecom | Cons | DCT&MNH | allElec | SUB.C | Ent Rd 02 | TEL |
| B2.1.33 81 26.100 |  | HDPE Pipe, Shuttering, Steel Fixing & Conc. Cast | 2d | 2026-11-26 | 2026-11-28 | B2.1.33 81 26.99 | 68.32d | 0d | Labor [46.78 h]; Laboratory Officer [23.39 h]; Carpenter [23.39 h]; Steelfixer [23.39 h]; Mason [23.39 h]; Surveyor [23.39 h]; Surveyor Helper [23.39 h]; (6*50mm+6*32mm) HDPE ducts [3] | 1,617.98 | 0.00142189094478329 | Cons. | Z2 | Telecom | Cons | DCT&MNH | allElec | SUB.C | Ent Rd 02 | TEL |
| B2.1.33 81 26.101 |  | Backfilling & Warrning Tape | 2d | 2026-11-29 | 2026-11-30 | B2.1.33 81 26.100 | 68.32d | 2d | Labor [46.78 h]; Foreman [23.39 h]; Operator [93.55 h]; Surveyor [23.39 h]; Surveyor Helper [23.39 h]; Loader [24 h]; Water Tanker [24 h]; Dump Truck [24 h]; Plate Compactor [24 h]; Roller Compactor [24 h]; (6*50mm+6*32mm) HDPE ducts [1] | 538.74 | 0.00047345125512784 | Cons. | Z2 | Telecom | Cons | DCT&MNH | allElec | SUB.C | Ent Rd 02 | TEL |
|  | (6*32mm) | **Size (6*32mm) HDPE ducts** |  | 2026-11-26 | 2026-12-02 |  |  |  |  |  |  |  |  |  |  |  |  |  |  |  |
| B2.1.33 81 26.102 |  | Excavation | 2d | 2026-11-26 | 2026-11-28 | B2.1.33 81 26.99 | 33.32d | 0d | Labor [31.18 h]; Foreman [15.59 h]; Operator [31.18 h]; Surveyor [15.59 h]; Surveyor Helper [15.59 h]; Excavator (With Bucket) [16 h]; Water Tanker [16 h]; Dump Truck [16 h]; Plate Compactor [16 h]; Telecom (6*32mm) HDPE ducts [6.59] | 1,696.4 | 0.00045211914565748 | Cons. | Z2 | Telecom | Cons | DCT&MNH | allElec | SUB.C | Ent Rd 02 | TEL |
| B2.1.33 81 26.103 |  | HDPE Pipe, Shuttering, Steel Fixing & Conc. Cast | 2d | 2026-11-29 | 2026-11-30 | B2.1.33 81 26.102 | 68.32d | 0d | Labor [31.18 h]; Laboratory Officer [15.59 h]; Carpenter [15.59 h]; Steelfixer [15.59 h]; Mason [15.59 h]; Surveyor [15.59 h]; Surveyor Helper [15.59 h]; Telecom (6*32mm) HDPE ducts [19.8] | 5,094.7 | 0.00135782535627653 | Cons. | Z2 | Telecom | Cons | DCT&MNH | allElec | SUB.C | Ent Rd 02 | TEL |
| B2.1.33 81 26.104 |  | Backfilling & Warrning Tape | 2d | 2026-12-01 | 2026-12-02 | B2.1.33 81 26.103 | 68.32d | 2d | Labor [46.78 h]; Foreman [23.39 h]; Operator [93.55 h]; Surveyor [23.39 h]; Surveyor Helper [23.39 h]; Loader [24 h]; Water Tanker [24 h]; Dump Truck [24 h]; Plate Compactor [24 h]; Roller Compactor [24 h]; Telecom (6*32mm) HDPE ducts [6.59] | 1,696.4 | 0.00045211914565748 | Cons. | Z2 | Telecom | Cons | DCT&MNH | allElec | SUB.C | Ent Rd 02 | TEL |
|  | Manholes | **Manholes** |  | 2026-11-26 | 2026-12-05 |  |  |  |  |  |  |  |  |  |  |  |  |  |  |  |
|  | Manhole Type 1 | **Manhole Type 1** |  | 2026-11-26 | 2026-12-02 |  |  |  |  |  |  |  |  |  |  |  |  |  |  |  |
| B2.31 23 00.610 |  | Excavation | 2d | 2026-11-26 | 2026-11-28 | B2.1.33 81 26.102 SS | 33.32d | 0d | Labor [31.18 h]; Foreman [15.59 h]; Operator [31.18 h]; Surveyor [15.59 h]; Surveyor Helper [15.59 h]; Excavator (With Bucket) [16 h]; Water Tanker [16 h]; Dump Truck [16 h]; Plate Compactor [16 h]; Manhole Type 1 [1.24] | 8,766.4 | 0.00167335317103356 | Cons. | Z2 | Telecom | Cons | DCT&MNH | allElec | SUB.C | Ent Rd 02 | TEL |
| B2.33 71 00.228 |  | Manhole Installation | 2d | 2026-11-29 | 2026-11-30 | B2.31 23 00.610 | 66.32d | 0d | Labor [31.18 h]; Laboratory Officer [15.59 h]; Carpenter [15.59 h]; Steelfixer [15.59 h]; Mason [15.59 h]; Surveyor [15.59 h]; Surveyor Helper [15.59 h]; Manhole Type 1 [3.72] | 26,299.19 | 0.00502005951310069 | Cons. | Z2 | Telecom | Cons | DCT&MNH | allElec | SUB.C | Ent Rd 02 | TEL |
| B2.33 71 00.229 |  | Backfilling & Warrning Tape | 2d | 2026-12-01 | 2026-12-02 | B2.33 71 00.228, B2.1.33 81 26.98 | 66.32d | 0d | Labor [31.18 h]; Foreman [15.59 h]; Operator [62.37 h]; Surveyor [15.59 h]; Surveyor Helper [15.59 h]; Loader [16 h]; Water Tanker [16 h]; Dump Truck [16 h]; Plate Compactor [16 h]; Roller Compactor [16 h]; Manhole Type 1 [1.24] | 8,766.4 | 0.00167335317103356 | Cons. | Z2 | Telecom | Cons | DCT&MNH | allElec | SUB.C | Ent Rd 02 | TEL |
|  | Manhole Type 2 | **Manhole Type 2** |  | 2026-11-29 | 2026-12-05 |  |  |  |  |  |  |  |  |  |  |  |  |  |  |  |
| B2.31 23 00.611 |  | Excavation | 2d | 2026-11-29 | 2026-11-30 | B2.31 23 00.610 | 33.32d | 0d | Labor [31.18 h]; Foreman [15.59 h]; Operator [31.18 h]; Surveyor [15.59 h]; Surveyor Helper [15.59 h]; Excavator (With Bucket) [16 h]; Water Tanker [16 h]; Dump Truck [16 h]; Plate Compactor [16 h]; Manhole Type 2 [0.52] | 3,287.69 | 0.000634453248743172 | Cons. | Z2 | Telecom | Cons | DCT&MNH | allElec | SUB.C | Ent Rd 02 | TEL |
| B2.33 71 00.230 |  | Manhole Installation | 2d | 2026-12-01 | 2026-12-02 | B2.31 23 00.611 | 66.32d | 0d | Labor [31.18 h]; Laboratory Officer [15.59 h]; Carpenter [15.59 h]; Steelfixer [15.59 h]; Mason [15.59 h]; Surveyor [15.59 h]; Surveyor Helper [15.59 h]; Manhole Type 2 [1.56] | 9,863.09 | 0.00190336462403523 | Cons. | Z2 | Telecom | Cons | DCT&MNH | allElec | SUB.C | Ent Rd 02 | TEL |
| B2.33 71 00.231 |  | Backfilling & Warrning Tape | 2d | 2026-12-03 | 2026-12-05 | B2.33 71 00.230, B2.1.33 81 26.179, B2.33 71 00.275, B2.1.33 81 26.101, B2.33 71 00.229 | 66.32d | 0d | Labor [31.18 h]; Foreman [15.59 h]; Operator [62.37 h]; Surveyor [15.59 h]; Surveyor Helper [15.59 h]; Loader [16 h]; Water Tanker [16 h]; Dump Truck [16 h]; Plate Compactor [16 h]; Roller Compactor [16 h]; Manhole Type 2 [0.52] | 3,287.69 | 0.000634453248743172 | Cons. | Z2 | Telecom | Cons | DCT&MNH | allElec | SUB.C | Ent Rd 02 | TEL |

| ID | WBS | Activity | Duration | Start | Finish | Predecessors | Complete | Planned start | Planned finish | Total float | Free float | Resources | Cost | Actual cost | Weight % | DMM2 Weekly Progress | DMM2 Zones | Networks & Stations | DMM2 Phases | Networks Components | All Electrical Scope | Subcontractors works | Dmm2 Roads | Yellow Sheet |
| --- | --- | --- | --- | --- | --- | --- | --- | --- | --- | --- | --- | --- | --- | --- | --- | --- | --- | --- | --- | --- | --- | --- | --- | --- |
|  | Crossing Ducts | **Road Crossing Ducts** |  | 2026-11-30 | 2026-12-05 |  |  |  |  |  |  |  |  |  |  |  |  |  |  |  |  |  |  |  |
|  | 2 | **Size (2*32mm) HDPE** |  | 2026-11-30 | 2026-12-05 |  |  |  |  |  |  |  |  |  |  |  |  |  |  |  |  |  |  |  |
| B2.31 23 00.613 |  | Excavation | 1d | 2026-11-30 | 2026-11-30 | B2.31 23 00.611 FF |  |  |  | 33.32d | 0d | Labor [31.18 h]; Foreman [15.59 h]; Operator [31.18 h]; Surveyor [15.59 h]; Surveyor Helper [15.59 h]; Excavator (With Bucket) [16 h]; Water Tanker [16 h]; Dump Truck [16 h]; Plate Compactor [16 h]; Road crossing ducts, (2*32mm) HDPE [3.35] | 547.76 |  | 7.49712936569771E-005 | Cons. | Z2 | Telecom | Cons | DCT&MNH | allElec | SUB.C | Ent Rd 02 | TEL |
| B2.33 71 00.234 |  | Shuttering, Steel Fixing Incl. UPVC Pipe & Conc. Cast | 2d | 2026-12-01 | 2026-12-02 | B2.31 23 00.613 |  |  |  | 33.32d | 0d | Labor [31.18 h]; Laboratory Officer [15.59 h]; Carpenter [15.59 h]; Steelfixer [15.59 h]; Mason [15.59 h]; Surveyor [15.59 h]; Surveyor Helper [15.59 h]; Road crossing ducts, (2*32mm) HDPE [10.04] | 1,639.89 |  | 0.000224448220761883 | Cons. | Z2 | Telecom | Cons | DCT&MNH | allElec | SUB.C | Ent Rd 02 | TEL |
| B2.33 71 00.235 |  | Backfilling & Warrning Tape | 2d | 2026-12-03 | 2026-12-05 | B2.33 71 00.234 |  |  |  | 33.32d | 21.32d | Labor [31.18 h]; Foreman [15.59 h]; Operator [62.37 h]; Surveyor [15.59 h]; Surveyor Helper [15.59 h]; Loader [16 h]; Water Tanker [16 h]; Dump Truck [16 h]; Plate Compactor [16 h]; Roller Compactor [16 h]; Road crossing ducts, (2*32mm) HDPE [3.35] | 547.76 |  | 7.49712936569771E-005 | Cons. | Z2 | Telecom | Cons | DCT&MNH | allElec | SUB.C | Ent Rd 02 | TEL |
|  | Earth & Road Works | **Earth & Road Works** |  | 2025-11-28 | 2026-12-31 |  |  |  |  |  |  |  |  |  |  |  |  |  |  |  |  |  |  |  |
|  | Earth Works | **Earth Works** |  | 2025-11-28 | 2026-04-01 |  |  |  |  |  |  |  |  |  |  |  |  |  |  |  |  |  |  |  |
| B1.2.31 23 16.01.5 |  | Roadway Excavation | 95.1d | 2025-11-28 A | 2026-04-01 A | DMM2-Eng-MS-78 | 100% | 2025-11-29 | 2026-04-01 |  |  | Roadway Excavation for cuttings (all types of soil) [22644.2]; Labor [28.35 h]; Foreman [14.17 h]; Operator [28.35 h]; Surveyor [14.17 h]; Surveyor Helper [14.17 h]; Excavator (With Bucket) [16 h]; Water Tanker [16 h]; Dump Truck [16 h] | 337,986.7 | 337,986.7 | 4.12723313467869E-005 | Cons. | Z2 | Roads | Cons |  |  |  | Ent Rd 02 |  |
| B1.2.31 23 23.01.5 |  | Embankment Backfiling | 26.76d | 2025-11-30 A | 2025-12-31 A | B1.2.31 23 16.01.5 | 100% |  |  |  |  | Embankment backfiling [13968.5]; Labor [42.52 h]; Foreman [21.26 h]; Operator [42.52 h]; Surveyor [21.26 h]; Surveyor Helper [21.26 h]; Loader [24 h]; Water Tanker [24 h]; Dump Truck [24 h]; Plate Compactor [24 h]; Roller Compactor [24 h] | 380,193.3 | 380,193.3 | 0.0504587537842888 | Cons. | Z2 | Roads | Cons |  |  |  | Ent Rd 02 |  |
|  | Earth Layers | **Earth Layers** |  | 2026-02-28 | 2026-10-22 |  |  |  |  |  |  |  |  |  |  |  |  |  |  |  |  |  |  |  |
| B1.2.32 11 13.01.5 |  | Subgrade (65.00% Completed) | 159.75d | 2026-02-28 A | 2026-09-15 A | B1.2.31 23 23.01.5 | 100% |  |  |  |  | Subgrade [1051.84]; Labor [20.27 h]; Foreman [10.14 h]; Operator [20.27 h]; Surveyor [10.14 h]; Surveyor Helper [10.14 h]; Grader [10.4 h]; Loader [10.4 h]; Water Tanker [10.4 h]; Dump Truck [10.4 h]; Plate Compactor [10.4 h]; Roller Compactor [10.4 h] | 31,399.43 | 31,399.43 | 0.0283272270995661 | Cons. | Z2 | Roads | Cons | Roads |  |  | Ent Rd 02 | Sub |
| B1.2.32 11 23.01.5 |  | Aggregate Base Course (55.00% Completed) | 90d | 2026-06-03 A | 2026-09-15 A | B1.2.32 11 13.01.5 FF | 100% |  |  |  |  | Aggregate base course [593.34]; Labor [17.15 h]; Foreman [8.58 h]; Operator [17.15 h]; Surveyor [8.58 h]; Surveyor Helper [8.58 h]; Grader [8.8 h]; Loader [8.8 h]; Water Tanker [8.8 h]; Dump Truck [8.8 h]; Plate Compactor [8.8 h]; Roller Compactor [8.8 h] | 51,574.6 | 51,574.6 | 0.0533901791643075 | Cons. | Z2 | Roads | Cons | Roads |  |  | Ent Rd 02 | Agg |
| B1.2.32 11 13.01.5_R |  | Subgrade(Rem) | 2d | 2026-10-21 | 2026-10-22 | B1.2.31 23 23.01.5, B1.2.32 11 13.01.5 |  |  |  | 44.32d | 0d | Subgrade [566.37]; Labor [10.91 h]; Foreman [5.46 h]; Operator [10.91 h]; Surveyor [5.46 h]; Surveyor Helper [5.46 h]; Grader [5.6 h]; Loader [5.6 h]; Water Tanker [5.6 h]; Dump Truck [5.6 h]; Plate Compactor [5.6 h]; Roller Compactor [5.6 h] | 16,907.39 |  | 0.0283272270995661 | Cons. | Z2 | Roads | Cons | Roads |  |  | Ent Rd 02 | Sub |
| B1.2.32 11 23.01.5_R |  | Aggregate Base Course(Rem) | 2d | 2026-10-21 | 2026-10-22 | B1.2.32 11 13.01.5_R FF, B1.2.32 11 23.01.5 |  |  |  | 44.32d | 0d | Aggregate base course [485.46]; Labor [14.03 h]; Foreman [7.02 h]; Operator [14.03 h]; Surveyor [7.02 h]; Surveyor Helper [7.02 h]; Grader [7.2 h]; Loader [7.2 h]; Water Tanker [7.2 h]; Dump Truck [7.2 h]; Plate Compactor [7.2 h]; Roller Compactor [7.2 h] | 42,197.4 |  | 0.0533901791643075 | Cons. | Z2 | Roads | Cons | Roads |  |  | Ent Rd 02 | Agg |
|  | Interlock | **Interlock** |  | 2026-11-29 | 2026-12-02 |  |  |  |  |  |  |  |  |  |  |  |  |  |  |  |  |  |  |  |
| B1.2.32 14 13.13.5 |  | 60mm thick - Interlocking Block Pavers | 3d | 2026-11-29 | 2026-12-02 | B2.33 71 16.50, B1.2.10 14 53.019 |  |  |  | 54d | 19d | 60mm thick - Interlocking block pavers for sidewalks and medians [385.14]; Labor [93.55 h]; Foreman [46.78 h]; Mason [46.78 h]; Operator [93.55 h]; JCB [48 h] | 25,699.34 |  | 0.0142675932431001 | Cons. | Z2 | Roads | Cons | Roads |  |  | Ent Rd 02 |  |
|  | Curbstone | **Curbstone** |  | 2026-11-24 | 2026-12-10 |  |  |  |  |  |  |  |  |  |  |  |  |  |  |  |  |  |  |  |
|  | Pre Install | **Pre-Installation** |  | 2026-11-24 | 2026-12-01 |  |  |  |  |  |  |  |  |  |  |  |  |  |  |  |  |  |  |  |
| B2.31 23 00.121 |  | Excavation | 2d | 2026-11-24 | 2026-11-26 | B2.31 23 00.251 |  |  |  | 0d |  | Curb Stone, Type K1 [51.42]; Dropped Curb, Type K3 [8.44]; Edge Curb, Type K4 [45.65]; Heel Curb, Type K5 [20.44]; Transition Curb [3.68]; Labor [31.18 h]; Foreman [15.59 h]; Operator [31.18 h]; Surveyor [15.59 h]; Surveyor Helper [15.59 h]; JCB [16 h]; Water Tanker [16 h]; Dump Truck [16 h]; Plate Compactor [16 h] | 9,618.97 |  | 0.00545699675160056 | Cons. | Z2 | Roads | Cons | Roads |  |  | Ent Rd 02 |  |
| B1.2.32 14 13.13.25 |  | PCC | 2d | 2026-11-26 | 2026-11-29 | B2.31 23 00.121 |  |  |  | 0d |  | Curb Stone, Type K1 [51.42]; Dropped Curb, Type K3 [8.44]; Edge Curb, Type K4 [45.65]; Heel Curb, Type K5 [20.44]; Transition Curb [3.68]; Labor [46.78 h]; Mason [23.39 h]; Surveyor [23.39 h]; Surveyor Helper [23.39 h] | 9,618.97 |  | 0.00545699675160056 | Cons. | Z2 | Roads | Cons | Roads |  |  | Ent Rd 02 |  |
| 32 16 13.005 |  | Haunching | 2d | 2026-11-29 | 2026-12-01 | B1.2.32 14 13.13.25 |  |  |  | 0d |  | Curb Stone, Type K1 [51.42]; Dropped Curb, Type K3 [8.44]; Edge Curb, Type K4 [45.65]; Heel Curb, Type K5 [20.44]; Transition Curb [3.68]; Labor [46.78 h]; Carpenter [23.39 h]; Mason [23.39 h]; Surveyor [23.39 h]; Surveyor Helper [23.39 h] | 9,618.97 |  | 0.00545699675160056 | Cons. | Z2 | Roads | Cons | Roads |  |  | Ent Rd 02 |  |
|  | Installation | **Installation** |  | 2026-11-30 | 2026-12-10 |  |  |  |  |  |  |  |  |  |  |  |  |  |  |  |  |  |  |  |
| B1.2.32 16.13.01.5 |  | Curb Stone, Type K1 | 3d | 2026-11-30 | 2026-12-03 | 32 16 13.005 SS+1d |  |  |  | 0d |  | Curb Stone, Type K1 [154.28]; Labor [31.18 h]; Foreman [15.59 h]; Mason [15.59 h]; Operator [31.18 h]; Surveyor [15.59 h]; Surveyor Helper [15.59 h]; JCB [16 h] | 11,649.56 |  | 0.00687107069245012 | Cons. | Z2 | Roads | Cons | Roads |  |  | Ent Rd 02 |  |
| B1.2.32 16.13.02.4 |  | Dropped Curb, Type K3 | 2d | 2026-12-01 | 2026-12-03 | B1.2.32 16.13.01.5 FF, 32 16 13.005 |  |  |  | 0d |  | Dropped Curb, Type K3 [1.87]; Labor [31.18 h]; Foreman [15.59 h]; Mason [15.59 h]; Operator [31.18 h]; Surveyor [15.59 h]; Surveyor Helper [15.59 h]; JCB [16 h] | 150.79 |  | 8.81241521932893E-005 | Cons. | Z2 | Roads | Cons | Roads |  |  | Ent Rd 02 |  |
| B1.2.32 16.13.03.5 |  | Edge Curb, Type K4 | 2d | 2026-12-03 | 2026-12-06 | B1.2.32 16.13.02.4, 32 16 13.005 |  |  |  | 0d |  | Edge Curb, Type K4 [136.94]; Labor [31.18 h]; Foreman [15.59 h]; Mason [15.59 h]; Operator [31.18 h]; Surveyor [15.59 h]; Surveyor Helper [15.59 h]; JCB [16 h] | 10,339.85 |  | 0.00569425747993102 | Cons. | Z2 | Roads | Cons | Roads |  |  | Ent Rd 02 |  |
| B1.2.32 16.13.045 |  | Heel Curb, Type K5 | 2d | 2026-12-06 | 2026-12-08 | B1.2.32 16.13.03.5, 32 16 13.005 |  |  |  | 0d |  | Heel Curb, Type K5 [61.34]; Labor [31.18 h]; Foreman [15.59 h]; Mason [15.59 h]; Operator [31.18 h]; Surveyor [15.59 h]; Surveyor Helper [15.59 h]; JCB [16 h] | 3,931.24 |  | 0.00206905921809342 | Cons. | Z2 | Roads | Cons | Roads |  |  | Ent Rd 02 |  |
| B1.2.32 16.13.05.4 |  | Transition Curb | 2d | 2026-12-08 | 2026-12-10 | B1.2.32 16.13.045, 32 16 13.005 |  |  |  | 0d |  | Transition Curb [3.94]; Labor [31.18 h]; Foreman [15.59 h]; Mason [15.59 h]; Operator [31.18 h]; Surveyor [15.59 h]; Surveyor Helper [15.59 h]; JCB [16 h] | 318.2 |  | 0.00019330459190786 | Cons. | Z2 | Roads | Cons | Roads |  |  | Ent Rd 02 |  |

| ID | WBS | Activity | Duration | Start | Finish | Predecessors | Total float | Free float | Resources | Cost | Weight % | DMM2 Weekly Progress | DMM2 Zones | Networks & Stations | DMM2 Phases | Networks Components | Dmm2 Roads | Yellow Sheet |
| --- | --- | --- | --- | --- | --- | --- | --- | --- | --- | --- | --- | --- | --- | --- | --- | --- | --- | --- |
|  | Finishing | **Finishing** |  | 2026-12-08 | 2026-12-10 |  |  |  |  |  |  |  |  |  |  |  |  |  |
| 32 16 13.05 |  | Finishing, Fareface | 2d | 2026-12-08 | 2026-12-10 | B1.2.32 16.13.01.5, B1.2.32 16.13.02.4, B1.2.32 16.13.03.5, B1.2.32 16.13.045, B1.2.32 16.13.05.4 FF, B1.2.32 12 19.13.16 | 0d |  | Curb Stone, Type K1 [34.28]; Dropped Curb, Type K3 [5.63]; Edge Curb, Type K4 [30.43]; Heel Curb, Type K5 [19.91]; Transition Curb [3.68]; Labor [93.55 h]; Mason [46.78 h] | 6,914.03 | 0.00390992437829341 | Cons. | Z2 | Roads | Cons | Roads | Ent Rd 02 |  |
|  | Asphalt Layers | **Asphalt Layers** |  | 2026-10-24 | 2026-12-16 |  |  |  |  |  |  |  |  |  |  |  |  |  |
| B1.2.32 11 26.01.5 |  | Bituminous Base Course including Prime Coat (MC1) and tack coat (RC2) | 2d | 2026-10-24 | 2026-10-25 | B1.2.32 11 23.01.5_R, B1.1.31 23 23.112 | 44.32d | 0d | Bituminous base course(Grading I - Class A) [739.17]; Labor [31.18 h]; Foreman [15.59 h]; Operator [31.18 h]; Surveyor [15.59 h]; Surveyor Helper [15.59 h]; Dump Truck [16 h]; Roller Compactor [16 h]; MC1/RC2 Sprayer [16 h] | 406,266.8 | 0.224111774582293 | Cons. | Z2 | Roads | Cons | Roads | Ent Rd 02 | BBC |
| B1.2.32 12 16.01.5 |  | Bituminous concrete Wearing Course, including tack coat (RC2) | 5d | 2026-12-10 | 2026-12-16 | B1.2.32 11 26.01.5, B8.31 23 16.011, 32 16 13.05 | 5d | 0d | Bituminous concrete wearing course, after compaction(Grading I - Class A), including tack coat (RC2) [270.46]; Labor [31.18 h]; Foreman [15.59 h]; Operator [31.18 h]; Surveyor [15.59 h]; Surveyor Helper [15.59 h]; Dump Truck [16 h]; Roller Compactor [16 h]; MC1/RC2 Sprayer [16 h] | 159,577.42 | 0.0879830298249533 | Cons. | Z2 | Roads | Cons | Roads | Ent Rd 02 | BWC |
|  | Pavement Marking | **Pavement Marking** |  | 2026-12-16 | 2026-12-19 |  |  |  |  |  |  |  |  |  |  |  |  |  |
| B1.2.32 17 23.02.5 |  | Retroreflective Thermoplastic Yellow, Traffic lines | 1d | 2026-12-16 | 2026-12-17 | B1.2.32 12 16.01.5 | 44d | 0d | Retroreflective Thermoplastic Yellow, Traffic lines [43.94]; Labor [31.18 h]; Mason [15.59 h]; Road Marking Machine [16 h] | 1,311.76 | 0.000659484791556934 | Cons. | Z2 | Roads | Cons | Roads | Ent Rd 02 |  |
| B1.2.32 17 23.01.5 |  | Retroreflective Thermoplastic White Traffic lines | 1d | 2026-12-17 | 2026-12-19 | B1.2.32 12 16.01.5, B1.2.32 17 23.02.5 | 44d | 9d | Retroreflective Thermoplastic White Traffic lines [91.68]; Labor [46.78 h]; Mason [23.39 h]; Road Marking Machine [24 h] | 2,736.89 | 0.00137596791147404 | Cons. | Z2 | Roads | Cons | Roads | Ent Rd 02 |  |
|  | Traffic Signs | **Traffic Signs** |  | 2026-12-08 | 2026-12-31 |  |  |  |  |  |  |  |  |  |  |  |  |  |
|  | Pre Install | **Pre-Installation** |  | 2026-12-08 | 2026-12-13 |  |  |  |  |  |  |  |  |  |  |  |  |  |
| B2.31 23 00.131 |  | Excavation | 2d | 2026-12-08 | 2026-12-10 | 32 16 13.05 SS | 0d |  | Traffic signs, ground mounted, 1 Sheet Alumenium, (breakaway) Single post [0.47]; Traffic signs, ground mounted, 1 Sheets Alumenium, (breakaway) Double post [1]; Ground mounted, 1 Sheet Alumenium powder coated UV printed, Single post [0.39]; Ground mounted, 1 Sheet Alumenium powder coated UV printed, Double post [0.5]; Labor [31.18 h]; Foreman [15.59 h]; Operator [31.18 h]; Surveyor [15.59 h]; Surveyor Helper [15.59 h]; JCB [16 h]; Water Tanker [16 h]; Dump Truck [16 h]; Plate Compactor [16 h] | 5,636.39 | 0.00283369395837258 | Cons. | Z2 | Roads | Cons | Roads | Ent Rd 02 |  |
| 10 14 53.05 |  | Foundation | 2d | 2026-12-10 | 2026-12-13 | B2.31 23 00.131 | 26d | 20d | Traffic signs, ground mounted, 1 Sheet Alumenium, (breakaway) Single post [0.47]; Traffic signs, ground mounted, 1 Sheets Alumenium, (breakaway) Double post [1]; Ground mounted, 1 Sheet Alumenium powder coated UV printed, Single post [0.39]; Ground mounted, 1 Sheet Alumenium powder coated UV printed, Double post [0.5]; Labor [46.78 h]; Carpenter [23.39 h]; Steelfixer [23.39 h]; Mason [23.39 h]; Surveyor [23.39 h]; Surveyor Helper [23.39 h] | 5,636.39 | 0.00283369395837258 | Cons. | Z2 | Roads | Cons | Roads | Ent Rd 02 |  |
|  | Installation | **Installation** |  | 2026-12-24 | 2026-12-31 |  |  |  |  |  |  |  |  |  |  |  |  |  |
| B1.2.10 14 53.015 |  | 1 Sheet Alumenium, Single post | 2d | 2026-12-24 | 2026-12-27 | B1.2.32 14 13.13.5, B1.2.10 14 53.017 FF | 35d | 0d | Traffic signs, ground mounted, 1 Sheet Alumenium, (breakaway) Single post [1.16]; Labor [31.18 h]; Foreman [15.59 h]; Operator [31.18 h]; JCB [16 h] | 1,294.49 | 0.000650805074272173 | Cons. | Z2 | Roads | Cons | Roads | Ent Rd 02 |  |
| B1.2.10 14 53.035 |  | 1 Sheet Alumenium, Double post | 2d | 2026-12-27 | 2026-12-29 | B1.2.32 14 13.13.5, B1.2.10 14 53.015 | 35d | 0d | Traffic signs, ground mounted, 1 Sheets Alumenium, (breakaway) Double post [2.5]; Labor [46.78 h]; Foreman [23.39 h]; Operator [46.78 h]; JCB [24 h] | 7,794.47 | 0.00391866691515677 | Cons. | Z2 | Roads | Cons | Roads | Ent Rd 02 |  |
| B1.2.10 14 14.01.5 |  | Ground mounted, 1 Sheet Alumenium, Single post | 2d | 2026-12-29 | 2026-12-31 | B1.2.32 14 13.13.5, B1.2.10 14 53.035, B1.2.32 17 23.01.5 | 35d | 0d | Ground mounted, 1 Sheet Alumenium powder coated UV printed, Single post [0.79]; Labor [31.18 h]; Foreman [15.59 h]; Operator [31.18 h]; JCB [16 h] | 876.81 | 0.000440817034925952 | Cons. | Z2 | Roads | Cons | Roads | Ent Rd 02 |  |
| B1.2.10 14 14.025 |  | Ground mounted, 1 Sheet Alumenium, Double post | 2d | 2026-12-29 | 2026-12-31 | B1.2.32 14 13.13.5, B1.2.10 14 14.01.5 SS | 35d | 0d | Ground mounted, 1 Sheet Alumenium powder coated UV printed, Double post [1]; Labor [31.18 h]; Foreman [15.59 h]; Operator [31.18 h]; JCB [16 h] | 3,117.79 | 0.00156746676606269 | Cons. | Z2 | Roads | Cons | Roads | Ent Rd 02 |  |
|  | Landscape | **Landscape** |  | 2026-12-10 | 2027-01-23 |  |  |  |  |  |  |  |  |  |  |  |  |  |
|  | Fences | **Fences** |  | 2026-12-10 | 2027-01-12 |  |  |  |  |  |  |  |  |  |  |  |  |  |
|  | (MODON)l fence | **Steel fence (MODON)** |  | 2026-12-10 | 2027-01-12 |  |  |  |  |  |  |  |  |  |  |  |  |  |
| B7.32 93 43.04.16 |  | Earthwork | 3d | 2026-12-10 | 2026-12-14 | B2.31 23 00.131 | 0d |  | Labor [93.55 h]; Foreman [46.78 h]; Operator [93.55 h]; Surveyor [46.78 h]; Surveyor Helper [46.78 h]; Excavator (With Bucket) [48 h]; Water Tanker [48 h]; Dump Truck [48 h]; Plate Compactor [48 h]; Steel fence (MODON) [93.38] | 70,343.16 | 0.0387026561597213 | Cons. | Z2 | Landscp | Cons | Fncs&Gt | Ent Rd 02 | Mod.Fns |
| B7.32 93 43.04.18 |  | Foundation | 3d | 2027-01-02 | 2027-01-05 | B7.32 93 43.04.16, B7.31 32 19.23.5 | 0d |  | Labor [93.55 h]; Laboratory Officer [46.78 h]; Carpenter [46.78 h]; Steelfixer [46.78 h]; Mason [46.78 h]; Surveyor [46.78 h]; Surveyor Helper [46.78 h]; Steel fence (MODON) [93.37] | 70,336.27 | 0.0386988688364846 | Cons. | Z2 | Landscp | Cons | Fncs&Gt | Ent Rd 02 | Mod.Fns |
| B7.32 93 43.04.20 |  | Fence Installation | 6d | 2027-01-05 | 2027-01-12 | B7.32 93 43.04.18, 10 14 53.05 | 6d | 0d | Labor [93.55 h]; Foreman [46.78 h]; Welder [46.78 h]; Mason [46.78 h]; Operator [93.55 h]; Boom Truck [48 h]; Welding Machine [48 h]; Steel fence (MODON) [435.76] | 328,263.48 | 0.180609870529875 | Cons. | Z2 | Landscp | Cons | Fncs&Gt | Ent Rd 02 | Mod.Fns |
|  | Gates | **Gates** |  | 2026-12-14 | 2027-01-23 |  |  |  |  |  |  |  |  |  |  |  |  |  |
|  | Size (4.1x 2.7)m | **Size (4.1x 2.7)m** |  | 2026-12-14 | 2027-01-14 |  |  |  |  |  |  |  |  |  |  |  |  |  |
| B7.32 93 43.04.22 |  | Earthwork | 4d | 2026-12-14 | 2026-12-19 | B7.32 93 43.04.16 | 0d |  | Labor [93.55 h]; Foreman [46.78 h]; Operator [93.55 h]; Surveyor [46.78 h]; Surveyor Helper [46.78 h]; Excavator (With Bucket) [48 h]; Water Tanker [48 h]; Dump Truck [48 h]; Plate Compactor [48 h]; Size (4.1x 2.7)m [0.3] | 3,848.81 | 0.0019349887497372 | Cons. | Z2 | Landscp | Cons | Fncs&Gt | Ent Rd 02 | Mod.Fns |
| B7.32 93 43.04.24 |  | Foundation | 3d | 2027-01-05 | 2027-01-09 | B7.32 93 43.04.22, B7.31 32 19.23.5, B7.32 93 43.04.18 | 0d |  | Labor [93.55 h]; Laboratory Officer [46.78 h]; Carpenter [46.78 h]; Steelfixer [46.78 h]; Mason [46.78 h]; Surveyor [46.78 h]; Surveyor Helper [46.78 h]; Size (4.1x 2.7)m [0.3] | 3,848.81 | 0.0019349887497372 | Cons. | Z2 | Landscp | Cons | Fncs&Gt | Ent Rd 02 | Mod.Fns |
| B7.32 93 43.04.26 |  | Gate Installation | 5d | 2027-01-09 | 2027-01-14 | B7.32 93 43.04.24 | 1d |  | Labor [93.55 h]; Foreman [46.78 h]; Welder [46.78 h]; Mason [46.78 h]; Operator [93.55 h]; Boom Truck [48 h]; Size (4.1x 2.7)m [1.4] | 17,961.12 | 0.0090299474987736 | Cons. | Z2 | Landscp | Cons | Fncs&Gt | Ent Rd 02 | Mod.Fns |

| ID | WBS | Activity | Duration | Start | Finish | Predecessors | Total float | Free float | Resources | Cost | Weight % | DMM2 Weekly Progress | DMM2 Zones | Networks & Stations | DMM2 Phases | Networks Components | Dmm2 Roads | Yellow Sheet |
| --- | --- | --- | --- | --- | --- | --- | --- | --- | --- | --- | --- | --- | --- | --- | --- | --- | --- | --- |
|  | Size (3.35x 2.7)m | **Size (3.35x 2.7)m** |  | 2026-12-19 | 2027-01-18 |  |  |  |  |  |  |  |  |  |  |  |  |  |
| B7.32 93 43.04.28 |  | Earthwork | 3d | 2026-12-19 | 2026-12-22 | B7.32 93 43.04.22 | 0d |  | Labor [93.55 h]; Foreman [46.78 h]; Operator [93.55 h]; Surveyor [46.78 h]; Surveyor Helper [46.78 h]; Excavator (With Bucket) [48 h]; Water Tanker [48 h]; Dump Truck [48 h]; Plate Compactor [48 h]; Size (3.35x 2.7)m [0.45] | 4,717.11 | 0.00237152536332289 | Cons. | Z2 | Landscp | Cons | Fncs&Gt | Ent Rd 02 | Mod.Fns |
| B7.32 93 43.04.30 |  | Foundation | 3d | 2027-01-09 | 2027-01-12 | B7.32 93 43.04.28, B7.31 32 19.23.5, B7.32 93 43.04.24 | 0d |  | Labor [93.55 h]; Laboratory Officer [46.78 h]; Carpenter [46.78 h]; Steelfixer [46.78 h]; Mason [46.78 h]; Surveyor [46.78 h]; Surveyor Helper [46.78 h]; Size (3.35x 2.7)m [0.45] | 4,717.11 | 0.00237152536332289 | Cons. | Z2 | Landscp | Cons | Fncs&Gt | Ent Rd 02 | Mod.Fns |
| B7.32 93 43.04.32 |  | Gate Installation | 5d | 2027-01-12 | 2027-01-18 | B7.32 93 43.04.30, B7.32 93 43.04.65, B7.32 93 43.04.68 | 1d |  | Labor [93.55 h]; Foreman [46.78 h]; Welder [46.78 h]; Mason [46.78 h]; Operator [93.55 h]; Boom Truck [48 h]; Size (3.35x 2.7)m [2.1] | 22,013.18 | 0.0110671183621734 | Cons. | Z2 | Landscp | Cons | Fncs&Gt | Ent Rd 02 | Mod.Fns |
|  | Size (4.35x 2.7)m | **Size (4.35x 2.7)m** |  | 2026-12-22 | 2027-01-19 |  |  |  |  |  |  |  |  |  |  |  |  |  |
| B7.32 93 43.04.34 |  | Earthwork | 3d | 2026-12-22 | 2026-12-26 | B7.32 93 43.04.28 | 0d |  | Labor [93.55 h]; Foreman [46.78 h]; Operator [93.55 h]; Surveyor [46.78 h]; Surveyor Helper [46.78 h]; Excavator (With Bucket) [48 h]; Water Tanker [48 h]; Dump Truck [48 h]; Plate Compactor [48 h]; Size (4.35x 2.7)m [0.38] | 5,172.43 | 0.00260043861646363 | Cons. | Z2 | Landscp | Cons | Fncs&Gt | Ent Rd 02 | Mod.Fns |
| B7.32 93 43.04.36 |  | Foundation | 3d | 2027-01-12 | 2027-01-16 | B7.32 93 43.04.34, B7.31 32 19.23.5, B7.32 93 43.04.30 | 0d |  | Labor [93.55 h]; Laboratory Officer [46.78 h]; Carpenter [46.78 h]; Steelfixer [46.78 h]; Mason [46.78 h]; Surveyor [46.78 h]; Surveyor Helper [46.78 h]; Size (4.35x 2.7)m [0.38] | 5,172.43 | 0.00260043861646363 | Cons. | Z2 | Landscp | Cons | Fncs&Gt | Ent Rd 02 | Mod.Fns |
| B7.32 93 43.04.38 |  | Gate Installation | 3d | 2027-01-16 | 2027-01-19 | B7.32 93 43.04.36, B7.32 93 43.04.26 | 0d |  | Labor [93.55 h]; Foreman [46.78 h]; Welder [46.78 h]; Mason [46.78 h]; Operator [93.55 h]; Boom Truck [48 h]; Size (4.35x 2.7)m [1.74] | 23,684.3 | 0.0119072715595966 | Cons. | Z2 | Landscp | Cons | Fncs&Gt | Ent Rd 02 | Mod.Fns |
|  | Size (3.25x 2.7)m | **Size (3.25x 2.7)m** |  | 2026-12-26 | 2027-01-23 |  |  |  |  |  |  |  |  |  |  |  |  |  |
| B7.32 93 43.04.40 |  | Earthwork | 3d | 2026-12-26 | 2026-12-29 | B7.32 93 43.04.34 | 0d |  | Labor [93.55 h]; Foreman [46.78 h]; Operator [93.55 h]; Surveyor [46.78 h]; Surveyor Helper [46.78 h]; Excavator (With Bucket) [48 h]; Water Tanker [48 h]; Dump Truck [48 h]; Plate Compactor [48 h]; Size (3.25x 2.7)m [0.15] | 1,525.48 | 0.000766934760690442 | Cons. | Z2 | Landscp | Cons | Fncs&Gt | Ent Rd 02 | Mod.Fns |
| B7.32 93 43.04.42 |  | Foundation | 3d | 2027-01-16 | 2027-01-19 | B7.32 93 43.04.40, B7.31 32 19.23.5, B7.32 93 43.04.36 | 0d |  | Labor [93.55 h]; Laboratory Officer [46.78 h]; Carpenter [46.78 h]; Steelfixer [46.78 h]; Mason [46.78 h]; Surveyor [46.78 h]; Surveyor Helper [46.78 h]; Size (3.25x 2.7)m [0.15] | 1,525.48 | 0.000766934760690442 | Cons. | Z2 | Landscp | Cons | Fncs&Gt | Ent Rd 02 | Mod.Fns |
| B7.32 93 43.04.44 |  | Gate Installation | 3d | 2027-01-19 | 2027-01-23 | B7.32 93 43.04.42, B7.32 93 43.04.71, B7.32 93 43.04.32, B7.32 93 43.04.38, B7.32 93 43.04.56 SS, B7.32 93 43.04.54 SS | 0d |  | Labor [93.55 h]; Foreman [46.78 h]; Welder [46.78 h]; Mason [46.78 h]; Operator [93.55 h]; Boom Truck [48 h]; Size (3.25x 2.7)m [0.7] | 7,118.93 | 0.00357903805532291 | Cons. | Z2 | Landscp | Cons | Fncs&Gt | Ent Rd 02 | Mod.Fns |
|  | Geotextile | **Geotextile** |  | 2026-12-20 | 2027-01-02 |  |  |  |  |  |  |  |  |  |  |  |  |  |
| B7.31 32 19.23.4 |  | Geotextile to protect trees planting soil | 3d | 2026-12-20 | 2026-12-23 | B1.2.32 12 16.01.5, B7.32 91 00.01 | 21d | 18d | Labor [93.55 h]; Foreman [46.78 h]; Landscape Specialist [46.78 h]; Geotextile to protect trees planting soil [2404.77] | 16,891.1 | 0.00622572151139121 | Cons. | Z2 | Landscp | Cons | Lndscp | Ent Rd 02 | Lndscp |
| B7.31 32 19.23.5 |  | Geotextile below gravel bed | 3d | 2026-12-29 | 2027-01-02 | B7.32 93 43.04.40 | 0d |  | Labor [93.55 h]; Foreman [46.78 h]; Landscape Specialist [46.78 h]; Geotextile below gravel bed [4820.72] | 33,860.71 | 0.0187266030487282 | Cons. | Z2 | Landscp | Cons | Lndscp | Ent Rd 02 | Lndscp |
|  | Ornamental Grasses | **Ornamental Grasses** |  | 2027-01-13 | 2027-01-19 |  |  |  |  |  |  |  |  |  |  |  |  |  |
| B7.32 93 13.01 |  | Pennisetum setaceum | 5d | 2027-01-13 | 2027-01-19 | B7.31 32 19.23.4, B7.32 91 00.01.02, DMM2-Proc-Delv-7540, DMM2-Proc-Delv-7329, B7.32 93 43.06 SS, B7.32 93 43.03 SS, B7.32 93 33.03 FF | 3d |  | Labor [93.55 h]; Operator [93.55 h]; Surveyor [46.78 h]; Surveyor Helper [46.78 h]; JCB [48 h]; Water Tanker [48 h]; Landscape Specialist [46.78 h]; Pennisetum setaceum [37688.1] | 2,845,828.17 | 3.7962722034715E-005 | Cons. | Z2 | Landscp | Cons | Lndscp | Ent Rd 02 | Lndscp |
|  | Large Shrubs | **Large Shrubs** |  | 2027-01-13 | 2027-01-19 |  |  |  |  |  |  |  |  |  |  |  |  |  |
| B7.32 93 33.03 |  | Tecomaria Capensis | 5d | 2027-01-13 | 2027-01-19 | B7.32 91 00.01.01, DMM2-Proc-Delv-7543, B7.32 91 00.02.02 | 3d | 0d | Labor [93.55 h]; Operator [93.55 h]; Surveyor [46.78 h]; Surveyor Helper [46.78 h]; JCB [48 h]; Water Tanker [48 h]; Landscape Specialist [46.78 h]; Tecomaria Capensis [984] | 285,104.89 | 0.000145667051812188 | Cons. | Z2 | Landscp | Cons | Lndscp | Ent Rd 02 | Lndscp |
|  | Miscellaneous | **Miscellaneous** |  | 2026-12-16 | 2027-01-13 |  |  |  |  |  |  |  |  |  |  |  |  |  |
| B7.32 91 00.01 |  | Plastic edge | 3d | 2026-12-16 | 2026-12-20 | B1.2.32 12 16.01.5, DMM2-Proc-Delv-7331 | 14d | 0d | Labor [77.96 h]; Operator [77.96 h]; Surveyor [38.98 h]; Surveyor Helper [38.98 h]; JCB [40 h]; Water Tanker [40 h]; Landscape Specialist [38.98 h]; Plastic edge [4000.01] | 115,896.3 | 0.0291334103624379 | Cons. | Z2 | Landscp | Cons | Lndscp | Ent Rd 02 | Lndscp |
| B7.32 91 00.01.01 |  | 75mm thickness for shrubs and grasses | 5d | 2027-01-02 | 2027-01-07 | B7.32 91 00.01.02 SS, B7.32 91 00.02.01 SS | 3d | 0d | Labor [155.92 h]; Operator [155.92 h]; Surveyor [77.96 h]; Surveyor Helper [77.96 h]; JCB [80 h]; Water Tanker [80 h]; Landscape Specialist [77.96 h]; 75mm thickness for shrubs and grasses [563.5] | 36,114.81 | 0.0164328663243875 | Cons. | Z2 | Landscp | Cons | Lndscp | Ent Rd 02 | Lndscp |
| B7.32 91 00.01.02 |  | 75mm thickness for trees | 5d | 2027-01-02 | 2027-01-07 | B7.32 91 00.01 SS, B7.32 91 00.02.01 SS | 3d | 0d | Labor [77.96 h]; Operator [77.96 h]; Surveyor [38.98 h]; Surveyor Helper [38.98 h]; JCB [40 h]; Water Tanker [40 h]; Landscape Specialist [38.98 h]; 75mm thickness for trees [40] | 2,563.61 | 0.00128885226073628 | Cons. | Z2 | Landscp | Cons | Lndscp | Ent Rd 02 | Lndscp |
| B7.32 91 00.02.01 |  | Grey gravel bed - 30-50 mm diameter (G1) | 5d | 2027-01-02 | 2027-01-07 | B7.32 91 00.01, B7.31 32 19.23.5, DMM2-Proc-Delv-7334 | 3d | 0d | Labor [124.74 h]; Operator [124.74 h]; Surveyor [62.37 h]; Surveyor Helper [62.37 h]; JCB [64 h]; Water Tanker [64 h]; Landscape Specialist [62.37 h]; 30-50 mm Dia. (G1) [18176.4] | 526,643.73 | 0.291334103624379 | Cons. | Z2 | Landscp | Cons | Lndscp | Ent Rd 02 | Lndscp |
| B7.32 91 00.02.02 |  | Grey gravel bed - 12-25 mm diameter (G2) | 5d | 2027-01-07 | 2027-01-13 | B7.32 91 00.02.01, B7.31 32 19.23.5, DMM2-Proc-Delv-7334 | 3d | 0d | Labor [124.74 h]; Operator [124.74 h]; Surveyor [62.37 h]; Surveyor Helper [62.37 h]; JCB [64 h]; Water Tanker [64 h]; Landscape Specialist [62.37 h]; 12-25 mm Dia. (G2) [18185.6] | 734,479.96 | 0.406102083840044 | Cons. | Z2 | Landscp | Cons | Lndscp | Ent Rd 02 | Lndscp |

| ID | WBS | Activity | Duration | Start | Finish | Predecessors | Complete | Resources | Cost | Actual cost | Weight % | DMM2 Weekly Progress | DMM2 Zones | Networks & Stations | DMM2 Phases | UNASCO | Networks Components | Subcontractors works | Dmm2 Roads | Yellow Sheet |
| --- | --- | --- | --- | --- | --- | --- | --- | --- | --- | --- | --- | --- | --- | --- | --- | --- | --- | --- | --- | --- |
|  | Management Road 01 | **Management Road 01** |  | 2025-11-26 | 2026-12-21 |  |  |  |  |  |  |  |  |  |  |  |  |  |  |  |
|  | Wet Networks | **Wet Networks** |  | 2026-02-05 | 2026-11-16 |  |  |  |  |  |  |  |  |  |  |  |  |  |  |  |
|  | Stormwater Network | **Stormwater Network** |  | 2026-02-05 | 2026-10-25 |  |  |  |  |  |  |  |  |  |  |  |  |  |  |  |
|  | GRP | **GRP** |  | 2026-02-05 | 2026-10-25 |  |  |  |  |  |  |  |  |  |  |  |  |  |  |  |
|  | ?400 | **?400** |  | 2026-02-05 | 2026-04-18 |  |  |  |  |  |  |  |  |  |  |  |  |  |  |  |
|  | 3 | **Depth From 1.5m to 2.5m** |  | 2026-02-05 | 2026-04-18 |  |  |  |  |  |  |  |  |  |  |  |  |  |  |  |
| B6.33 42 11.01-101 |  | Excavation | 14.97d | 2026-02-05 A | 2026-02-25 A | B1.2.31 23 16.01.6 | 100% | Labor [28.35 h]; Foreman [14.17 h]; Operator [28.35 h]; Surveyor [14.17 h]; Surveyor Helper [14.17 h]; Excavator (With Bucket) [16 h]; Water Tanker [16 h]; Dump Truck [16 h]; Plate Compactor [16 h]; Depth: 1.51m - 2.5m [3.99] | 1,531.45 | 1,531.45 | 0.00310601117599926 | Cons. | Z2 | Storm | Cons | CS.UNSC | GRPs | SUB.C | Mngmnt Rd | Strm |
| B6.33 42 11.01-107 |  | Sand Bedding | 14.72d | 2026-02-07 A | 2026-02-26 A | B6.33 42 11.01-101 | 100% | Labor [28.35 h]; Foreman [14.17 h]; Operator [56.7 h]; Surveyor [14.17 h]; Surveyor Helper [14.17 h]; Loader [16 h]; Water Tanker [16 h]; Dump Truck [16 h]; Plate Compactor [16 h]; Depth: 1.51m - 2.5m [1] | 383 | 383 | 0.000776776306783888 | Cons. | Z2 | Storm | Cons | CS.UNSC | GRPs | SUB.C | Mngmnt Rd | Strm |
| B6.33 42 11.01-1013 |  | Pipe Laying | 12.47d | 2026-02-10 A | 2026-02-28 A | B6.33 42 11.01-107 | 100% | Labor [28.35 h]; Foreman [14.17 h]; Plumber Helper [14.17 h]; Plumber [14.17 h]; Operator [14.17 h]; Surveyor [14.17 h]; Surveyor Helper [14.17 h]; Mobile Crane [16 h]; Depth: 1.51m - 2.5m [8.98] | 3,445.9 | 3,445.9 | 0.00698879865878235 | Cons. | Z2 | Storm | Cons | CS.UNSC | GRPs | SUB.C | Mngmnt Rd | Strm |
| B6.33 42 11.01-1019 |  | Embedment & Test | 4d | 2026-04-08 A | 2026-04-12 A | B6.33 42 11.01-1013 | 100% | Labor [56.7 h]; Foreman [28.35 h]; Plumber Helper [28.35 h]; Plumber [28.35 h]; Operator [56.7 h]; Surveyor [28.35 h]; Surveyor Helper [28.35 h]; Loader [32 h]; Water Tanker [32 h]; Dump Truck [32 h]; Plate Compactor [32 h]; Roller Compactor [32 h]; Depth: 1.51m - 2.5m [3.99] | 1,531.45 | 1,531.45 | 0.00310601117599926 | Cons. | Z2 | Storm | Cons | CS.UNSC | GRPs | SUB.C | Mngmnt Rd | Strm |
| B6.33 42 11.01-1025 |  | Backfilling & Warrning Tape | 7d | 2026-04-11 A | 2026-04-18 A | B6.33 42 11.01-1019 | 100% | Labor [70.87 h]; Foreman [35.44 h]; Operator [141.75 h]; Surveyor [35.44 h]; Surveyor Helper [35.44 h]; Loader [40 h]; Water Tanker [40 h]; Dump Truck [40 h]; Plate Compactor [40 h]; Roller Compactor [40 h]; Depth: 1.51m - 2.5m [2] | 766 | 766 | 0.00155355261356778 | Cons. | Z2 | Storm | Cons | CS.UNSC | GRPs | SUB.C | Mngmnt Rd | Strm |
|  | ?4001 | **?500** |  | 2026-02-08 | 2026-04-21 |  |  |  |  |  |  |  |  |  |  |  |  |  |  |  |
|  | 3 | **Depth From 1.5m to 2.5m** |  | 2026-02-08 | 2026-04-21 |  |  |  |  |  |  |  |  |  |  |  |  |  |  |  |
| B6.33 42 11.01-102 |  | Excavation | 14.36d | 2026-02-08 A | 2026-02-28 A | B6.33 42 11.01-101 | 100% | Labor [28.35 h]; Foreman [14.17 h]; Operator [28.35 h]; Surveyor [14.17 h]; Surveyor Helper [14.17 h]; Excavator (With Bucket) [16 h]; Water Tanker [16 h]; Dump Truck [16 h]; Plate Compactor [16 h]; 1.51m - 2.5m [12.84] | 7,427.81 | 7,427.81 | 0.00678741471010152 | Cons. | Z2 | Storm | Cons | CS.UNSC | GRPs | SUB.C | Mngmnt Rd | Strm |
| B6.33 42 11.01-108 |  | Sand Bedding | 13.11d | 2026-02-10 A | 2026-03-01 A | B6.33 42 11.01-102 | 100% | Labor [28.35 h]; Foreman [14.17 h]; Operator [56.7 h]; Surveyor [14.17 h]; Surveyor Helper [14.17 h]; Loader [16 h]; Water Tanker [16 h]; Dump Truck [16 h]; Plate Compactor [16 h]; 1.51m - 2.5m [3.21] | 1,856.05 | 1,856.05 | 0.00169602876081295 | Cons. | Z2 | Storm | Cons | CS.UNSC | GRPs | SUB.C | Mngmnt Rd | Strm |
| B6.33 42 11.01-1014 |  | Pipe Laying | 12.86d | 2026-02-11 A | 2026-03-02 A | B6.33 42 11.01-108 | 100% | Labor [28.35 h]; Foreman [14.17 h]; Plumber Helper [14.17 h]; Plumber [14.17 h]; Operator [14.17 h]; Surveyor [14.17 h]; Surveyor Helper [14.17 h]; Mobile Crane [16 h]; 1.51m - 2.5m [28.88] | 16,711.67 | 16,711.67 | 0.0152708581810161 | Cons. | Z2 | Storm | Cons | CS.UNSC | GRPs | SUB.C | Mngmnt Rd | Strm |
| B6.33 42 11.01-1020 |  | Embedment & Test | 3d | 2026-04-08 A | 2026-04-11 A | B6.33 42 11.01-1014 | 100% | Labor [56.7 h]; Foreman [28.35 h]; Plumber Helper [28.35 h]; Plumber [28.35 h]; Operator [56.7 h]; Surveyor [28.35 h]; Surveyor Helper [28.35 h]; Loader [32 h]; Water Tanker [32 h]; Dump Truck [32 h]; Plate Compactor [32 h]; Roller Compactor [32 h]; 1.51m - 2.5m [12.84] | 7,427.81 | 7,427.81 | 0.00678741471010152 | Cons. | Z2 | Storm | Cons | CS.UNSC | GRPs | SUB.C | Mngmnt Rd | Strm |
| B6.33 42 11.01-1026 |  | Backfilling & Warrning Tape | 5d | 2026-04-16 A | 2026-04-21 A | B6.33 42 11.01-1020 | 100% | Labor [70.87 h]; Foreman [35.44 h]; Operator [141.75 h]; Surveyor [35.44 h]; Surveyor Helper [35.44 h]; Loader [40 h]; Water Tanker [40 h]; Dump Truck [40 h]; Plate Compactor [40 h]; Roller Compactor [40 h]; 1.51m - 2.5m [6.42] | 3,713.91 | 3,713.91 | 0.00339370735505079 | Cons. | Z2 | Storm | Cons | CS.UNSC | GRPs | SUB.C | Mngmnt Rd | Strm |
|  | ?4002 | **?600** |  | 2026-04-08 | 2026-05-04 |  |  |  |  |  |  |  |  |  |  |  |  |  |  |  |
|  | 4 | **Depth From 1.5m to 2.5m** |  | 2026-04-08 | 2026-05-04 |  |  |  |  |  |  |  |  |  |  |  |  |  |  |  |
| B6.33 42 11.01-103 |  | Excavation | 2d | 2026-04-08 A | 2026-04-09 A | B6.33 42 11.01-102 | 100% | Labor [28.35 h]; Foreman [14.17 h]; Operator [28.35 h]; Surveyor [14.17 h]; Surveyor Helper [14.17 h]; Excavator (With Bucket) [16 h]; Water Tanker [16 h]; Dump Truck [16 h]; Plate Compactor [16 h]; 1.51m - 2.5m [9.52] | 8,061.23 | 8,061.23 | 5.30950164986435E-005 | Cons. | Z2 | Storm | Cons | CS.UNSC | GRPs | SUB.C | Mngmnt Rd | Strm |
| B6.33 42 11.01-109 |  | Sand Bedding | 2d | 2026-04-11 A | 2026-04-12 A | B6.33 42 11.01-103 | 100% | Labor [28.35 h]; Foreman [14.17 h]; Operator [56.7 h]; Surveyor [14.17 h]; Surveyor Helper [14.17 h]; Loader [16 h]; Water Tanker [16 h]; Dump Truck [16 h]; Plate Compactor [16 h]; 1.51m - 2.5m [9.52] | 8,061.23 | 8,061.23 | 5.30950164986435E-005 | Cons. | Z2 | Storm | Cons | CS.UNSC | GRPs | SUB.C | Mngmnt Rd | Strm |
| B6.33 42 11.01-1015 |  | Pipe Laying | 2d | 2026-04-13 A | 2026-04-14 A | B6.33 42 11.01-109 | 100% | Labor [28.35 h]; Foreman [14.17 h]; Plumber Helper [14.17 h]; Plumber [14.17 h]; Operator [14.17 h]; Surveyor [14.17 h]; Surveyor Helper [14.17 h]; Mobile Crane [16 h]; 1.51m - 2.5m [21.65] | 18,321.02 | 18,321.02 | 0.000120670801288806 | Cons. | Z2 | Storm | Cons | CS.UNSC | GRPs | SUB.C | Mngmnt Rd | Strm |
| B6.33 42 11.01-1021 |  | Embedment & Test | 3d | 2026-04-29 A | 2026-05-02 A | B6.33 42 11.01-1015 | 100% | Labor [56.7 h]; Foreman [28.35 h]; Plumber Helper [28.35 h]; Plumber [28.35 h]; Operator [56.7 h]; Surveyor [28.35 h]; Surveyor Helper [28.35 h]; Loader [32 h]; Water Tanker [32 h]; Dump Truck [32 h]; Plate Compactor [32 h]; Roller Compactor [32 h]; 1.51m - 2.5m [2.6] | 2,198.52 | 2,198.52 | 1.44804590450846E-005 | Cons. | Z2 | Storm | Cons | CS.UNSC | GRPs | SUB.C | Mngmnt Rd | Strm |
| B6.33 42 11.01-1027 |  | Backfilling & Warrning Tape | 4d | 2026-04-30 A | 2026-05-04 A | B6.33 42 11.01-1021 | 100% | Labor [70.87 h]; Foreman [35.44 h]; Operator [141.75 h]; Surveyor [35.44 h]; Surveyor Helper [35.44 h]; Loader [40 h]; Water Tanker [40 h]; Dump Truck [40 h]; Plate Compactor [40 h]; Roller Compactor [40 h]; 1.51m - 2.5m [4.76] | 4,030.61 | 4,030.61 | 2.65475082493218E-005 | Cons. | Z2 | Storm | Cons | CS.UNSC | GRPs | SUB.C | Mngmnt Rd | Strm |

| ID | WBS | Activity | Duration | Start | Finish | Predecessors | Complete | Total float | Free float | Resources | Cost | Actual cost | Weight % | DMM2 Weekly Progress | DMM2 Zones | Networks & Stations | DMM2 Phases | UNASCO | Networks Components | Subcontractors works | Dmm2 Roads | Yellow Sheet |
| --- | --- | --- | --- | --- | --- | --- | --- | --- | --- | --- | --- | --- | --- | --- | --- | --- | --- | --- | --- | --- | --- | --- |
|  | ?40021 | **?700** |  | 2026-02-26 | 2026-05-04 |  |  |  |  |  |  |  |  |  |  |  |  |  |  |  |  |  |
|  | 4 | **Depth From 1.5m to 2.5m** |  | 2026-02-26 | 2026-05-04 |  |  |  |  |  |  |  |  |  |  |  |  |  |  |  |  |  |
| B6.33 42 11.01-104 |  | Excavation | 1.25d | 2026-02-26 A | 2026-02-28 A | B6.33 42 11.01-103 | 100% |  |  | Labor [28.35 h]; Foreman [14.17 h]; Operator [28.35 h]; Surveyor [14.17 h]; Surveyor Helper [14.17 h]; Excavator (With Bucket) [16 h]; Water Tanker [16 h]; Dump Truck [16 h]; Plate Compactor [16 h]; 1.51m - 2.5m [13.17] | 12,116.46 | 12,116.46 | 0.00417736572342047 | Cons. | Z2 | Storm | Cons | CS.UNSC | GRPs | SUB.C | Mngmnt Rd | Strm |
| B6.33 42 11.01-1010 |  | Sand Bedding | 0.5d | 2026-02-28 A | 2026-03-01 A | B6.33 42 11.01-104 | 100% |  |  | Labor [28.35 h]; Foreman [14.17 h]; Operator [56.7 h]; Surveyor [14.17 h]; Surveyor Helper [14.17 h]; Loader [16 h]; Water Tanker [16 h]; Dump Truck [16 h]; Plate Compactor [16 h]; 1.51m - 2.5m [3.29] | 3,031.02 | 3,031.02 | 0.00104499783653133 | Cons. | Z2 | Storm | Cons | CS.UNSC | GRPs | SUB.C | Mngmnt Rd | Strm |
| B6.33 42 11.01-1016 |  | Pipe Laying | 0.5d | 2026-03-01 A | 2026-03-02 A | B6.33 42 11.01-1010 | 100% |  |  | Labor [28.35 h]; Foreman [14.17 h]; Plumber Helper [14.17 h]; Plumber [14.17 h]; Operator [14.17 h]; Surveyor [14.17 h]; Surveyor Helper [14.17 h]; Mobile Crane [16 h]; 1.51m - 2.5m [29.63] | 27,263.93 | 27,263.93 | 0.0093997292833722 | Cons. | Z2 | Storm | Cons | CS.UNSC | GRPs | SUB.C | Mngmnt Rd | Strm |
| B6.33 42 11.01-1022 |  | Embedment & Test | 4d | 2026-04-29 A | 2026-05-03 A | B6.33 42 11.01-1016 | 100% |  |  | Labor [56.7 h]; Foreman [28.35 h]; Plumber Helper [28.35 h]; Plumber [28.35 h]; Operator [56.7 h]; Surveyor [28.35 h]; Surveyor Helper [28.35 h]; Loader [32 h]; Water Tanker [32 h]; Dump Truck [32 h]; Plate Compactor [32 h]; Roller Compactor [32 h]; 1.51m - 2.5m [13.17] | 12,116.46 | 12,116.46 | 0.00417736572342047 | Cons. | Z2 | Storm | Cons | CS.UNSC | GRPs | SUB.C | Mngmnt Rd | Strm |
| B6.33 42 11.01-1028 |  | Backfilling & Warrning Tape | 3d | 2026-05-02 A | 2026-05-04 A | B6.33 42 11.01-1022 | 100% |  |  | Labor [70.87 h]; Foreman [35.44 h]; Operator [141.75 h]; Surveyor [35.44 h]; Surveyor Helper [35.44 h]; Loader [40 h]; Water Tanker [40 h]; Dump Truck [40 h]; Plate Compactor [40 h]; Roller Compactor [40 h]; 1.51m - 2.5m [6.59] | 6,062.04 | 6,062.04 | 0.00208999567306265 | Cons. | Z2 | Storm | Cons | CS.UNSC | GRPs | SUB.C | Mngmnt Rd | Strm |
|  | ?400111 | **?1000** |  | 2026-02-26 | 2026-04-28 |  |  |  |  |  |  |  |  |  |  |  |  |  |  |  |  |  |
|  | 3 | **Depth From 1.5m to 2.5m** |  | 2026-02-26 | 2026-04-28 |  |  |  |  |  |  |  |  |  |  |  |  |  |  |  |  |  |
| B6.33 42 11.01-106 |  | Excavation | 0.75d | 2026-02-26 A | 2026-02-28 A | B6.33 42 11.01-104 | 100% |  |  | Labor [42.52 h]; Foreman [21.26 h]; Operator [42.52 h]; Surveyor [21.26 h]; Surveyor Helper [21.26 h]; Excavator (With Bucket) [24 h]; Water Tanker [24 h]; Dump Truck [24 h]; Plate Compactor [24 h]; 1.51m - 2.5m [41.86] | 49,467.42 | 49,467.42 | 0.0115721224372084 | Cons. | Z2 | Storm | Cons | CS.UNSC | GRPs | SUB.C | Mngmnt Rd | Strm |
| B6.33 42 11.01-1012 |  | Sand Bedding | 0.5d | 2026-02-28 A | 2026-03-01 A | B6.33 42 11.01-106 | 100% |  |  | Labor [28.35 h]; Foreman [14.17 h]; Operator [56.7 h]; Surveyor [14.17 h]; Surveyor Helper [14.17 h]; Loader [16 h]; Water Tanker [16 h]; Dump Truck [16 h]; Plate Compactor [16 h]; 1.51m - 2.5m [10.46] | 12,363.24 | 12,363.24 | 0.00289218395123674 | Cons. | Z2 | Storm | Cons | CS.UNSC | GRPs | SUB.C | Mngmnt Rd | Strm |
| B6.33 42 11.01-1018 |  | Pipe Laying | 0.75d | 2026-03-02 A | 2026-03-02 A | B6.33 42 11.01-1012 | 100% |  |  | Labor [28.35 h]; Foreman [14.17 h]; Plumber Helper [14.17 h]; Plumber [14.17 h]; Operator [14.17 h]; Surveyor [14.17 h]; Surveyor Helper [14.17 h]; Mobile Crane [16 h]; 1.51m - 2.5m [94.18] | 111,298.08 | 111,298.08 | 0.0260364288256535 | Cons. | Z2 | Storm | Cons | CS.UNSC | GRPs | SUB.C | Mngmnt Rd | Strm |
| B6.33 42 11.01-1024 |  | Embedment & Test | 4d | 2026-04-22 A | 2026-04-26 A | B6.33 42 11.01-1018 | 100% |  |  | Labor [56.7 h]; Foreman [28.35 h]; Plumber Helper [28.35 h]; Plumber [28.35 h]; Operator [56.7 h]; Surveyor [28.35 h]; Surveyor Helper [28.35 h]; Loader [32 h]; Water Tanker [32 h]; Dump Truck [32 h]; Plate Compactor [32 h]; Roller Compactor [32 h]; 1.51m - 2.5m [41.86] | 49,467.42 | 49,467.42 | 0.0115721224372084 | Cons. | Z2 | Storm | Cons | CS.UNSC | GRPs | SUB.C | Mngmnt Rd | Strm |
| B6.33 42 11.01-1030 |  | Backfilling & Warrning Tape | 5d | 2026-04-23 A | 2026-04-28 A | B6.33 42 11.01-1024, B6.33 42 11.01-1027 | 100% |  |  | Labor [70.87 h]; Foreman [35.44 h]; Operator [141.75 h]; Surveyor [35.44 h]; Surveyor Helper [35.44 h]; Loader [40 h]; Water Tanker [40 h]; Dump Truck [40 h]; Plate Compactor [40 h]; Roller Compactor [40 h]; 1.51m - 2.5m [20.94] | 24,740.95 | 24,740.95 | 0.00578775453473488 | Cons. | Z2 | Storm | Cons | CS.UNSC | GRPs | SUB.C | Mngmnt Rd | Strm |
|  | ?40011 | **?1100** |  | 2026-04-15 | 2026-10-25 |  |  |  |  |  |  |  |  |  |  |  |  |  |  |  |  |  |
|  | 3 | **Depth From 2.5m to 3.5m** |  | 2026-04-15 | 2026-10-25 |  |  |  |  |  |  |  |  |  |  |  |  |  |  |  |  |  |
| B6.33 42 11.01-105 |  | Excavation | 50.23d | 2026-04-15 A | 2026-06-17 A | B6.33 42 11.01-104 | 100% |  |  | Labor [28.35 h]; Foreman [14.17 h]; Operator [28.35 h]; Surveyor [14.17 h]; Surveyor Helper [14.17 h]; Excavator (With Bucket) [16 h]; Water Tanker [16 h]; Dump Truck [16 h]; Plate Compactor [16 h]; 2.51m - 3.5m [9.71] | 15,230.1 | 15,230.1 | 0.00344293574973529 | Cons. | Z2 | Storm | Cons | CS.UNSC | GRPs | SUB.C | Mngmnt Rd | Strm |
| B6.33 42 11.01-1011 |  | Sand Bedding | 50.23d | 2026-04-18 A | 2026-06-20 A | B6.33 42 11.01-105 | 100% |  |  | Labor [28.35 h]; Foreman [14.17 h]; Operator [56.7 h]; Surveyor [14.17 h]; Surveyor Helper [14.17 h]; Loader [16 h]; Water Tanker [16 h]; Dump Truck [16 h]; Plate Compactor [16 h]; 2.51m - 3.5m [2.43] | 3,817.42 | 3,817.42 | 0.00086296960999858 | Cons. | Z2 | Storm | Cons | CS.UNSC | GRPs | SUB.C | Mngmnt Rd | Strm |
| B6.33 42 11.01-1017 |  | Pipe Laying (68.80% Completed) | 122.28d | 2026-04-21 A | 2026-09-15 A | B6.33 42 11.01-1011 | 100% |  |  | Labor [21.45 h]; Foreman [10.73 h]; Plumber Helper [10.73 h]; Plumber [10.73 h]; Operator [10.73 h]; Surveyor [10.73 h]; Surveyor Helper [10.73 h]; Mobile Crane [11.01 h]; 2.51m - 3.5m [15.05] | 23,595.24 | 23,595.24 | 0.0077533124545987 | Cons. | Z2 | Storm | Cons | CS.UNSC | GRPs | SUB.C | Mngmnt Rd | Strm |
| B6.33 42 11.01-1023 |  | Embedment & Test (68.80% Completed) | 89.28d | 2026-06-03 A | 2026-09-15 A | B6.33 42 11.01-1017 FF | 100% |  |  | Labor [42.91 h]; Foreman [21.45 h]; Plumber Helper [21.45 h]; Plumber [21.45 h]; Operator [42.91 h]; Surveyor [21.45 h]; Surveyor Helper [21.45 h]; Loader [22.01 h]; Water Tanker [22.01 h]; Dump Truck [22.01 h]; Plate Compactor [22.01 h]; Roller Compactor [22.01 h]; 2.51m - 3.5m [6.69] | 10,491.31 | 10,491.31 | 0.00344740709486481 | Cons. | Z2 | Storm | Cons | CS.UNSC | GRPs | SUB.C | Mngmnt Rd | Strm |
| B6.33 42 11.01-1029 |  | Backfilling & Warrning Tape (68.80% Completed) | 85.28d | 2026-06-08 A | 2026-09-15 A | B6.33 42 11.01-1025, B6.33 42 11.01-1023 SS | 100% |  |  | Labor [53.63 h]; Foreman [26.82 h]; Operator [107.27 h]; Surveyor [26.82 h]; Surveyor Helper [26.82 h]; Loader [27.52 h]; Water Tanker [27.52 h]; Dump Truck [27.52 h]; Plate Compactor [27.52 h]; Roller Compactor [27.52 h]; 2.51m - 3.5m [3.34] | 5,238.85 | 5,238.85 | 0.00172146787486764 | Cons. | Z2 | Storm | Cons | CS.UNSC | GRPs | SUB.C | Mngmnt Rd | Strm |
| B6.33 42 11.01-1017_R |  | Pipe Laying(Rem) | 2.28d | 2026-10-21 | 2026-10-24 | B6.33 42 11.01-1011, B6.33 42 11.01-1017 |  | 107.64d | 0.56d | Labor [9.73 h]; Foreman [4.87 h]; Plumber Helper [4.87 h]; Plumber [4.87 h]; Operator [4.87 h]; Surveyor [4.87 h]; Surveyor Helper [4.87 h]; Mobile Crane [4.99 h]; 2.51m - 3.5m [6.82] | 10,702.16 |  | 0.0077533124545987 | Cons. | Z2 | Storm | Cons | CS.UNSC | GRPs | SUB.C | Mngmnt Rd | Strm |
| B6.33 42 11.01-1023_R |  | Embedment & Test(Rem) | 2.84d | 2026-10-21 | 2026-10-24 | B6.33 42 11.01-1017_R FF, B6.33 42 11.01-1023 |  | 107.08d | 0d | Labor [19.46 h]; Foreman [9.73 h]; Plumber Helper [9.73 h]; Plumber [9.73 h]; Operator [19.46 h]; Surveyor [9.73 h]; Surveyor Helper [9.73 h]; Loader [9.99 h]; Water Tanker [9.99 h]; Dump Truck [9.99 h]; Plate Compactor [9.99 h]; Roller Compactor [9.99 h]; 2.51m - 3.5m [3.03] | 4,758.57 |  | 0.00344740709486481 | Cons. | Z2 | Storm | Cons | CS.UNSC | GRPs | SUB.C | Mngmnt Rd | Strm |
| B6.33 42 11.01-1029_R |  | Backfilling & Warrning Tape(Rem) | 3.12d | 2026-10-21 | 2026-10-25 | B6.33 42 11.01-1025, B6.33 42 11.01-1023_R SS, B6.33 42 11.01-1029 |  | 107.08d | 0d | Labor [24.33 h]; Foreman [12.16 h]; Operator [48.65 h]; Surveyor [12.16 h]; Surveyor Helper [12.16 h]; Loader [12.48 h]; Water Tanker [12.48 h]; Dump Truck [12.48 h]; Plate Compactor [12.48 h]; Roller Compactor [12.48 h]; 2.51m - 3.5m [1.52] | 2,376.2 |  | 0.00172146787486764 | Cons. | Z2 | Storm | Cons | CS.UNSC | GRPs | SUB.C | Mngmnt Rd | Strm |

| ID | WBS | Activity | Duration | Start | Finish | Predecessors | Complete | Planned start | Planned finish | Total float | Free float | Resources | Cost | Actual cost | Weight % | DMM2 Weekly Progress | DMM2 Zones | Networks & Stations | DMM2 Phases | UNASCO | Networks Components | Subcontractors works | Dmm2 Roads | Yellow Sheet |
| --- | --- | --- | --- | --- | --- | --- | --- | --- | --- | --- | --- | --- | --- | --- | --- | --- | --- | --- | --- | --- | --- | --- | --- | --- |
|  | Strom Manholes | **Manholes** |  | 2026-02-08 | 2026-10-25 |  |  |  |  |  |  |  |  |  |  |  |  |  |  |  |  |  |  |  |
|  | 1 | **?1200** |  | 2026-02-08 | 2026-09-24 |  |  |  |  |  |  |  |  |  |  |  |  |  |  |  |  |  |  |  |
|  | 3 | **Depth From 1.5m to 2.5m** |  | 2026-02-08 | 2026-09-24 |  |  |  |  |  |  |  |  |  |  |  |  |  |  |  |  |  |  |  |
| B6.33 05 39.01.2927 |  | Excavation & Compaction | 13.93d | 2026-02-08 A | 2026-02-26 A | B6.33 42 11.01-105 | 100% |  |  |  |  | Labor [28.35 h]; Foreman [14.17 h]; Operator [28.35 h]; Surveyor [14.17 h]; Surveyor Helper [14.17 h]; Excavator (With Bucket) [16 h]; Water Tanker [16 h]; Dump Truck [16 h]; Plate Compactor [16 h]; MH depth 1.50 - 2.5m [1.07] | 9,648.47 | 9,648.47 | 2.49372657086146E-005 | Cons. | Z2 | Storm | Cons | CS.UNSC | Manhole | SUB.C | Mngmnt Rd | Strm |
| B6.33 05 39.01.2937 |  | Blinding Conc, & RC Base | 2d | 2026-04-08 A | 2026-04-09 A | B6.33 05 39.01.2927 | 100% |  |  |  |  | Labor [42.52 h]; Foreman [21.26 h]; Laboratory Officer [21.26 h]; Carpenter [21.26 h]; Steelfixer [21.26 h]; Mason [21.26 h]; MH depth 1.50 - 2.5m [1.07] | 9,648.47 | 9,648.47 | 2.49372657086146E-005 | Cons. | Z2 | Storm | Cons | CS.UNSC | Manhole | SUB.C | Mngmnt Rd | Strm |
| B6.33 05 39.01.2947 |  | Manhole Installation (91.00% Completed) | 91.62d | 2026-06-01 A | 2026-09-15 A | B6.33 05 39.01.2937 | 100% |  |  |  |  | Labor [28.38 h]; Operator [28.38 h]; Surveyor [14.19 h]; Surveyor Helper [14.19 h]; Boom Truck [14.56 h]; Mobile Crane [14.56 h]; MH depth 1.50 - 2.5m [2.93] | 26,340.32 | 26,340.32 | 7.48117971258433E-005 | Cons. | Z2 | Storm | Cons | CS.UNSC | Manhole | SUB.C | Mngmnt Rd | Strm |
| B6.33 05 39.01.2957 |  | Test, Internal Finishing, Benching & Cover (91.00% Completed) | 89.62d | 2026-06-03 A | 2026-09-15 A | B6.33 05 39.01.2947 SS | 100% |  |  |  |  | Labor [56.76 h]; Foreman [28.38 h]; Plumber Helper [28.38 h]; Plumber [28.38 h]; Mason [28.38 h]; MH depth 1.50 - 2.5m [0.98] | 8,780.11 | 8,780.11 | 2.49372657086146E-005 | Cons. | Z2 | Storm | Cons | CS.UNSC | Manhole | SUB.C | Mngmnt Rd | Strm |
| B6.33 05 39.01.2967 |  | Backfilling (91.00% Completed) | 85.62d | 2026-06-08 A | 2026-09-15 A | B6.33 05 39.01.2957 SS, B6.33 42 11.01-1.46 SS | 100% |  |  |  |  | Labor [42.57 h]; Foreman [21.28 h]; Operator [42.57 h]; Surveyor [21.28 h]; Surveyor Helper [21.28 h]; Loader [21.84 h]; Water Tanker [21.84 h]; Dump Truck [21.84 h]; Plate Compactor [21.84 h]; MH depth 1.50 - 2.5m [1.96] | 17,560.21 | 17,560.21 | 4.98745314172292E-005 | Cons. | Z2 | Storm | Cons | CS.UNSC | Manhole | SUB.C | Mngmnt Rd | Strm |
| B6.33 05 39.01.2947_R |  | Manhole Installation(Rem) | 2d | 2026-09-16 A | 2026-09-17 A | B6.33 05 39.01.2937, B6.33 05 39.01.2947 | 100% |  |  |  |  | Labor [2.81 h]; Operator [2.81 h]; Surveyor [1.4 h]; Surveyor Helper [1.4 h]; Boom Truck [1.44 h]; Mobile Crane [1.44 h]; MH depth 1.50 - 2.5m [0.29] | 2,605.09 | 2,605.09 | 7.48117971258433E-005 | Cons. | Z2 | Storm | Cons | CS.UNSC | Manhole | SUB.C | Mngmnt Rd | Strm |
| B6.33 05 39.01.2967_R |  | Backfilling(Rem) | 2d | 2026-09-19 A | 2026-09-21 A | B6.33 05 39.01.2957_R SS, B6.33 42 11.01-1.46_R SS, B6.33 05 39.01.2967, B6.33 42 11.361510_R | 100% |  |  |  |  | Labor [4.21 h]; Foreman [2.1 h]; Operator [4.21 h]; Surveyor [2.1 h]; Surveyor Helper [2.1 h]; Loader [2.16 h]; Water Tanker [2.16 h]; Dump Truck [2.16 h]; Plate Compactor [2.16 h]; MH depth 1.50 - 2.5m [0.19] | 1,736.72 | 1,736.72 | 4.98745314172292E-005 | Cons. | Z2 | Storm | Cons | CS.UNSC | Manhole | SUB.C | Mngmnt Rd | Strm |
| B6.33 05 39.01.2957_R |  | Test, Internal Finishing, Benching & Cover(Rem) | 2d | 2026-09-24 A | 2026-09-24 A | B6.33 05 39.01.2947_R SS, B6.33 05 39.01.2957 | 100% | 2026-09-16 | 2026-09-17 |  |  | Labor [5.61 h]; Foreman [2.81 h]; Plumber Helper [2.81 h]; Plumber [2.81 h]; Mason [2.81 h]; MH depth 1.50 - 2.5m [0.1] | 868.36 | 868.36 | 2.49372657086146E-005 | Cons. | Z2 | Storm | Cons | CS.UNSC | Manhole | SUB.C | Mngmnt Rd | Strm |
|  | 2 | **?1500** |  | 2026-02-09 | 2026-10-22 |  |  |  |  |  |  |  |  |  |  |  |  |  |  |  |  |  |  |  |
|  | 1 | **Depth From 2.5m to 3.5m** |  | 2026-02-09 | 2026-10-22 |  |  |  |  |  |  |  |  |  |  |  |  |  |  |  |  |  |  |  |
| B6.33 05 39.01.3027 |  | Excavation & Compaction | 12.59d | 2026-02-09 A | 2026-02-26 A | B6.33 05 39.01.2927 | 100% |  |  |  |  | Labor [28.35 h]; Foreman [14.17 h]; Operator [28.35 h]; Surveyor [14.17 h]; Surveyor Helper [14.17 h]; Excavator (With Bucket) [16 h]; Water Tanker [16 h]; Dump Truck [16 h]; Plate Compactor [16 h]; MH depth 2.51 - 3.5m [0.26] | 3,722.58 | 3,722.58 | 0.00193019830555769 | Cons. | Z2 | Storm | Cons | CS.UNSC | Manhole | SUB.C | Mngmnt Rd | Strm |
| B6.33 05 39.01.3037 |  | Blinding Conc, & RC Base (91.00% Completed) | 85.62d | 2026-06-08 A | 2026-09-15 A | B6.33 05 39.01.3027 | 100% |  |  |  |  | Labor [42.57 h]; Foreman [21.28 h]; Laboratory Officer [21.28 h]; Carpenter [21.28 h]; Steelfixer [21.28 h]; Mason [21.28 h]; MH depth 2.51 - 3.5m [0.16] | 2,258.32 | 2,258.32 | 0.00128677283889427 | Cons. | Z2 | Storm | Cons | CS.UNSC | Manhole | SUB.C | Mngmnt Rd | Strm |
| B6.33 05 39.01.3047 |  | Manhole Installation (91.00% Completed) | 80d | 2026-06-15 A | 2026-09-15 A | B6.33 05 39.01.3037 SS | 100% |  |  |  |  | Labor [28.38 h]; Operator [28.38 h]; Surveyor [14.19 h]; Surveyor Helper [14.19 h]; Boom Truck [14.56 h]; Mobile Crane [14.56 h]; MH depth 2.51 - 3.5m [0.72] | 10,479.08 | 10,479.08 | 0.00597090210688867 | Cons. | Z2 | Storm | Cons | CS.UNSC | Manhole | SUB.C | Mngmnt Rd | Strm |
| B6.33 05 39.01.3057 |  | Test, Internal Finishing, Benching & Cover (91.00% Completed) | 74d | 2026-06-22 A | 2026-09-15 A | B6.33 05 39.01.3047 SS | 100% |  |  |  |  | Labor [56.76 h]; Foreman [28.38 h]; Plumber Helper [28.38 h]; Plumber [28.38 h]; Mason [28.38 h]; MH depth 2.51 - 3.5m [0.16] | 2,258.32 | 2,258.32 | 0.00128677283889427 | Cons. | Z2 | Storm | Cons | CS.UNSC | Manhole | SUB.C | Mngmnt Rd | Strm |
| B6.33 05 39.01.3067 |  | Backfilling (91.00% Completed) | 73d | 2026-06-23 A | 2026-09-15 A | B6.33 05 39.01.3057 SS, B6.33 05 39.01.4267 SS | 100% |  |  |  |  | Labor [56.76 h]; Foreman [28.38 h]; Operator [56.76 h]; Surveyor [28.38 h]; Surveyor Helper [28.38 h]; Loader [29.12 h]; Water Tanker [29.12 h]; Dump Truck [29.12 h]; Plate Compactor [29.12 h]; MH depth 2.51 - 3.5m [0.31] | 4,446.07 | 4,446.07 | 0.00253334051883564 | Cons. | Z2 | Storm | Cons | CS.UNSC | Manhole | SUB.C | Mngmnt Rd | Strm |
| B6.33 05 39.01.3037_R |  | Blinding Conc, & RC Base(Rem) | 2d | 2026-09-19 A | 2026-09-22 A | B6.33 05 39.01.3027, B6.33 05 39.01.3037 | 100% | 2026-09-16 | 2026-09-17 |  |  | Labor [4.21 h]; Foreman [2.1 h]; Laboratory Officer [2.1 h]; Carpenter [2.1 h]; Steelfixer [2.1 h]; Mason [2.1 h]; MH depth 2.51 - 3.5m [0.02] | 223.35 | 223.35 | 0.00128677283889427 | Cons. | Z2 | Storm | Cons | CS.UNSC | Manhole | SUB.C | Mngmnt Rd | Strm |
| B6.33 05 39.01.3047_R |  | Manhole Installation(Rem) | 2d | 2026-09-19 A | 2026-09-22 A | B6.33 05 39.01.3037_R SS, B6.33 05 39.01.3047 | 100% | 2026-09-16 | 2026-09-17 |  |  | Labor [2.81 h]; Operator [2.81 h]; Surveyor [1.4 h]; Surveyor Helper [1.4 h]; Boom Truck [1.44 h]; Mobile Crane [1.44 h]; MH depth 2.51 - 3.5m [0.07] | 1,036.39 | 1,036.39 | 0.00597090210688867 | Cons. | Z2 | Storm | Cons | CS.UNSC | Manhole | SUB.C | Mngmnt Rd | Strm |
| B6.33 05 39.01.3067_R |  | Backfilling(Rem) | 4d | 2026-09-27 A | 2026-10-01 A | B6.33 05 39.01.3057_R SS, B6.33 05 39.01.4267_R SS, B6.33 05 39.01.3067 | 100% |  |  |  |  | Labor [5.61 h]; Foreman [2.81 h]; Operator [5.61 h]; Surveyor [2.81 h]; Surveyor Helper [2.81 h]; Loader [2.88 h]; Water Tanker [2.88 h]; Dump Truck [2.88 h]; Plate Compactor [2.88 h]; MH depth 2.51 - 3.5m [0.03] | 439.72 | 439.72 | 0.00253334051883564 | Cons. | Z2 | Storm | Cons | CS.UNSC | Manhole | SUB.C | Mngmnt Rd | Strm |
| B6.33 05 39.01.3057_R |  | Test, Internal Finishing, Benching & Cover(Rem) | 2d | 2026-10-21 | 2026-10-22 | B6.33 05 39.01.3047_R SS, B6.33 05 39.01.3057 |  |  |  | 111.32d |  | Labor [5.61 h]; Foreman [2.81 h]; Plumber Helper [2.81 h]; Plumber [2.81 h]; Mason [2.81 h]; MH depth 2.51 - 3.5m [0.02] | 223.35 |  | 0.00128677283889427 | Cons. | Z2 | Storm | Cons | CS.UNSC | Manhole | SUB.C | Mngmnt Rd | Strm |
|  | 3 | **?2000** |  | 2026-02-26 | 2026-10-25 |  |  |  |  |  |  |  |  |  |  |  |  |  |  |  |  |  |  |  |
|  | 1 | **Depth From 2.5m to 3.5m** |  | 2026-02-26 | 2026-10-25 |  |  |  |  |  |  |  |  |  |  |  |  |  |  |  |  |  |  |  |
| B6.33 05 39.01.3127 |  | Excavation & Compaction | 2d | 2026-02-26 A | 2026-03-01 A | B6.33 05 39.01.3027 | 100% |  |  |  |  | Labor [28.35 h]; Foreman [14.17 h]; Operator [28.35 h]; Surveyor [14.17 h]; Surveyor Helper [14.17 h]; Excavator (With Bucket) [16 h]; Water Tanker [16 h]; Dump Truck [16 h]; Plate Compactor [16 h]; Storm MH depth 2.51 - 3.5m [0.63] | 10,765.08 | 10,765.08 | 0.00208346832855844 | Cons. | Z2 | Storm | Cons | CS.UNSC | Manhole | SUB.C | Mngmnt Rd | Strm |
| B6.33 05 39.01.3137 |  | Blinding Conc, & RC Base (88.33% Completed) | 85.62d | 2026-06-08 A | 2026-09-15 A | B6.33 05 39.01.3127 | 100% |  |  |  |  | Labor [41.32 h]; Foreman [20.66 h]; Laboratory Officer [20.66 h]; Carpenter [20.66 h]; Steelfixer [20.66 h]; Mason [20.66 h]; Storm MH depth 2.51 - 3.5m [0.37] | 6,267.16 | 6,267.16 | 0.00137319503473171 | Cons. | Z2 | Storm | Cons | CS.UNSC | Manhole | SUB.C | Mngmnt Rd | Strm |
| B6.33 05 39.01.3147 |  | Manhole Installation (88.33% Completed) | 74d | 2026-06-22 A | 2026-09-15 A | B6.33 05 39.01.3137 SS | 100% |  |  |  |  | Labor [27.55 h]; Operator [27.55 h]; Surveyor [13.77 h]; Surveyor Helper [13.77 h]; Boom Truck [14.13 h]; Mobile Crane [14.13 h]; Storm MH depth 2.51 - 3.5m [1.74] | 29,677.68 | 29,677.68 | 0.00625042100380389 | Cons. | Z2 | Storm | Cons | CS.UNSC | Manhole | SUB.C | Mngmnt Rd | Strm |
| B6.33 05 39.01.3157 |  | Test, Internal Finishing, Benching & Cover (88.33% Completed) | 73d | 2026-06-23 A | 2026-09-15 A | B6.33 05 39.01.3147 SS | 100% |  |  |  |  | Labor [55.09 h]; Foreman [27.55 h]; Plumber Helper [27.55 h]; Plumber [27.55 h]; Mason [27.55 h]; Storm MH depth 2.51 - 3.5m [0.37] | 6,267.16 | 6,267.16 | 0.00137319503473171 | Cons. | Z2 | Storm | Cons | CS.UNSC | Manhole | SUB.C | Mngmnt Rd | Strm |
| B6.33 05 39.01.3167 |  | Backfilling (88.33% Completed) | 73d | 2026-06-23 A | 2026-09-15 A | B6.33 05 39.01.3157 SS, B6.33 42 11.35-132 SS, B6.33 42 11.36-122 SS, B6.33 05 39.01.3067 SS | 100% |  |  |  |  | Labor [68.86 h]; Foreman [34.43 h]; Operator [68.86 h]; Surveyor [34.43 h]; Surveyor Helper [34.43 h]; Loader [35.33 h]; Water Tanker [35.33 h]; Dump Truck [35.33 h]; Plate Compactor [35.33 h]; Storm MH depth 2.51 - 3.5m [0.8] | 13,696.67 | 13,696.67 | 0.00300107232895791 | Cons. | Z2 | Storm | Cons | CS.UNSC | Manhole | SUB.C | Mngmnt Rd | Strm |
| B6.33 05 39.01.3137_R |  | Blinding Conc, & RC Base(Rem) | 2d | 2026-10-21 | 2026-10-22 | B6.33 05 39.01.3127, B6.33 05 39.01.3137 |  |  |  | 105.32d | 0d | Labor [5.46 h]; Foreman [2.73 h]; Laboratory Officer [2.73 h]; Carpenter [2.73 h]; Steelfixer [2.73 h]; Mason [2.73 h]; Storm MH depth 2.51 - 3.5m [0.05] | 828.01 |  | 0.00137319503473171 | Cons. | Z2 | Storm | Cons | CS.UNSC | Manhole | SUB.C | Mngmnt Rd | Strm |
| B6.33 05 39.01.3147_R |  | Manhole Installation(Rem) | 2d | 2026-10-21 | 2026-10-22 | B6.33 05 39.01.3137_R SS, B6.33 05 39.01.3147 |  |  |  | 105.32d | 0d | Labor [3.64 h]; Operator [3.64 h]; Surveyor [1.82 h]; Surveyor Helper [1.82 h]; Boom Truck [1.87 h]; Mobile Crane [1.87 h]; Storm MH depth 2.51 - 3.5m [0.23] | 3,920.96 |  | 0.00625042100380389 | Cons. | Z2 | Storm | Cons | CS.UNSC | Manhole | SUB.C | Mngmnt Rd | Strm |
| B6.33 05 39.01.3157_R |  | Test, Internal Finishing, Benching & Cover(Rem) | 2d | 2026-10-21 | 2026-10-22 | B6.33 05 39.01.3147_R SS, B6.33 05 39.01.3157 |  |  |  | 105.32d | 0d | Labor [7.28 h]; Foreman [3.64 h]; Plumber Helper [3.64 h]; Plumber [3.64 h]; Mason [3.64 h]; Storm MH depth 2.51 - 3.5m [0.05] | 828.01 |  | 0.00137319503473171 | Cons. | Z2 | Storm | Cons | CS.UNSC | Manhole | SUB.C | Mngmnt Rd | Strm |
| B6.33 05 39.01.3167_R |  | Backfilling(Rem) | 4d | 2026-10-21 | 2026-10-25 | B6.33 05 39.01.3157_R SS, B6.33 42 11.35-132_R SS, B6.33 42 11.36-122_R SS, B6.33 05 39.01.3067_R SS, B6.33 05 39.01.3167 |  |  |  | 105.32d | 1.14d | Labor [9.1 h]; Foreman [4.55 h]; Operator [9.1 h]; Surveyor [4.55 h]; Surveyor Helper [4.55 h]; Loader [4.67 h]; Water Tanker [4.67 h]; Dump Truck [4.67 h]; Plate Compactor [4.67 h]; Storm MH depth 2.51 - 3.5m [0.11] | 1,809.58 |  | 0.00300107232895791 | Cons. | Z2 | Storm | Cons | CS.UNSC | Manhole | SUB.C | Mngmnt Rd | Strm |

| ID | WBS | Activity | Duration | Start | Finish | Predecessors | Complete | Remaining | Planned start | Planned finish | Total float | Free float | Resources | Cost | Actual cost | Weight % | DMM2 Weekly Progress | DMM2 Zones | Networks & Stations | DMM2 Phases | UNASCO | Networks Components | Subcontractors works | Dmm2 Roads | Yellow Sheet |
| --- | --- | --- | --- | --- | --- | --- | --- | --- | --- | --- | --- | --- | --- | --- | --- | --- | --- | --- | --- | --- | --- | --- | --- | --- | --- |
|  | Catch Basins | **Catch Basins** |  | 2026-04-02 | 2026-10-22 |  |  |  |  |  |  |  |  |  |  |  |  |  |  |  |  |  |  |  |  |
|  | Sing | **Single** |  | 2026-06-08 | 2026-10-22 |  |  |  |  |  |  |  |  |  |  |  |  |  |  |  |  |  |  |  |  |
| B6.33 05 40.01.250 |  | Excavation, Compaction & Vapour Barrier (91.00% Completed) | 85.62d | 2026-06-08 A | 2026-09-15 A | B6.33 05 39.01.3127 | 100% |  |  |  |  |  | Labor [28.38 h]; Foreman [14.19 h]; Operator [28.38 h]; Surveyor [14.19 h]; Surveyor Helper [14.19 h]; Excavator (With Bucket) [14.56 h]; Water Tanker [14.56 h]; Dump Truck [14.56 h]; Roller Compactor [14.56 h]; Single Catch basin [2.71] | 12,249.4 | 12,249.4 | 0.00295277448760277 | Cons. | Z2 | Storm | Cons | CS.UNSC | CBs | SUB.C | Mngmnt Rd | Strm |
| B6.33 05 40.01.260 |  | Blinding Conc. (91.00% Completed) | 74d | 2026-06-22 A | 2026-09-15 A | B6.33 05 40.01.250 SS | 100% |  |  |  |  |  | Labor [28.38 h]; Foreman [14.19 h]; Laboratory Officer [14.19 h]; Carpenter [14.19 h]; Steelfixer [14.19 h]; Mason [14.19 h]; Single Catch basin [1.81] | 8,184.1 | 8,184.1 | 0.00197281439564727 | Cons. | Z2 | Storm | Cons | CS.UNSC | CBs | SUB.C | Mngmnt Rd | Strm |
| B6.33 05 40.01.270 |  | Catch Basin Installation (91.00% Completed) | 73d | 2026-06-23 A | 2026-09-15 A | B6.33 05 40.01.260 SS | 100% |  |  |  |  |  | Labor [42.57 h]; Foreman [21.28 h]; Carpenter [21.28 h]; Steelfixer [21.28 h]; Mason [21.28 h]; Operator [42.57 h]; Surveyor [21.28 h]; Surveyor Helper [21.28 h]; Boom Truck [21.84 h]; Single Catch basin [8.13] | 36,748.2 | 36,748.2 | 0.00885832346280832 | Cons. | Z2 | Storm | Cons | CS.UNSC | CBs | SUB.C | Mngmnt Rd | Strm |
| B6.33 05 40.01.280 |  | Backfilling, DI Frame & Grate Cover Fixing (91.00% Completed) | 73d | 2026-06-23 A | 2026-09-15 A | B6.33 05 40.01.270 SS | 100% |  |  |  |  |  | Labor [56.76 h]; Foreman [28.38 h]; Operator [56.76 h]; Surveyor [28.38 h]; Surveyor Helper [28.38 h]; Loader [29.12 h]; Water Tanker [29.12 h]; Dump Truck [29.12 h]; Plate Compactor [29.12 h]; Single Catch basin [5.42] | 24,498.8 | 24,498.8 | 0.00590554897520555 | Cons. | Z2 | Storm | Cons | CS.UNSC | CBs | SUB.C | Mngmnt Rd | Strm |
| B6.33 05 40.01.250_R |  | Excavation, Compaction & Vapour Barrier(Rem) | 2d | 2026-10-21 | 2026-10-22 | B6.33 05 39.01.3127, B6.33 05 40.01.250 |  |  |  |  | 111.32d | 0d | Labor [2.81 h]; Foreman [1.4 h]; Operator [2.81 h]; Surveyor [1.4 h]; Surveyor Helper [1.4 h]; Excavator (With Bucket) [1.44 h]; Water Tanker [1.44 h]; Dump Truck [1.44 h]; Roller Compactor [1.44 h]; Single Catch basin [0.27] | 1,211.48 |  | 0.00295277448760277 | Cons. | Z2 | Storm | Cons | CS.UNSC | CBs | SUB.C | Mngmnt Rd | Strm |
| B6.33 05 40.01.260_R |  | Blinding Conc.(Rem) | 2d | 2026-10-21 | 2026-10-22 | B6.33 05 40.01.250_R SS, B6.33 05 40.01.260 |  |  |  |  | 111.32d | 0d | Labor [2.81 h]; Foreman [1.4 h]; Laboratory Officer [1.4 h]; Carpenter [1.4 h]; Steelfixer [1.4 h]; Mason [1.4 h]; Single Catch basin [0.18] | 809.42 |  | 0.00197281439564727 | Cons. | Z2 | Storm | Cons | CS.UNSC | CBs | SUB.C | Mngmnt Rd | Strm |
| B6.33 05 40.01.270_R |  | Catch Basin Installation(Rem) | 2d | 2026-10-21 | 2026-10-22 | B6.33 05 40.01.260_R SS, B6.33 05 40.01.270 |  |  |  |  | 111.32d | 0d | Labor [4.21 h]; Foreman [2.1 h]; Carpenter [2.1 h]; Steelfixer [2.1 h]; Mason [2.1 h]; Operator [4.21 h]; Surveyor [2.1 h]; Surveyor Helper [2.1 h]; Boom Truck [2.16 h]; Single Catch basin [0.8] | 3,634.44 |  | 0.00885832346280832 | Cons. | Z2 | Storm | Cons | CS.UNSC | CBs | SUB.C | Mngmnt Rd | Strm |
| B6.33 05 40.01.280_R |  | Backfilling, DI Frame & Grate Cover Fixing(Rem) | 2d | 2026-10-21 | 2026-10-22 | B6.33 05 40.01.270_R SS, B6.33 05 40.01.280 |  |  |  |  | 111.32d |  | Labor [5.61 h]; Foreman [2.81 h]; Operator [5.61 h]; Surveyor [2.81 h]; Surveyor Helper [2.81 h]; Loader [2.88 h]; Water Tanker [2.88 h]; Dump Truck [2.88 h]; Plate Compactor [2.88 h]; Single Catch basin [0.54] | 2,422.96 |  | 0.00590554897520555 | Cons. | Z2 | Storm | Cons | CS.UNSC | CBs | SUB.C | Mngmnt Rd | Strm |
|  | UPVC | **UPVC** |  | 2026-04-02 | 2026-10-21 |  |  |  |  |  |  |  |  |  |  |  |  |  |  |  |  |  |  |  |  |
|  | UPVC300 | **?300 From 0.0 to 1.5m** |  | 2026-04-02 | 2026-10-21 |  |  |  |  |  |  |  |  |  |  |  |  |  |  |  |  |  |  |  |  |
| B6.33 42 11.35-131 |  | Catch Basin Opening Prep. (50.00% Completed) | 139d | 2026-04-02 A | 2026-09-15 A | B6.33 05 40.01.270 SS | 100% |  |  |  |  |  | Labor [15.59 h]; Foreman [7.8 h]; Plumber Helper [7.8 h]; Plumber [7.8 h]; less than 1.5 [23.31] | 14,017.98 | 14,017.98 | 0.0150835855285905 | Cons. | Z2 | Storm | Cons | CS.UNSC | UPVC | SUB.C | Mngmnt Rd | Strm |
| B6.33 42 11.35-132 |  | Fittings & Pipe Installation (50.00% Completed) | 137d | 2026-04-05 A | 2026-09-15 A | B6.33 42 11.35-131 SS | 100% |  |  |  |  |  | Labor [15.59 h]; Foreman [7.8 h]; Plumber Helper [7.8 h]; Plumber [7.8 h]; Surveyor [7.8 h]; Surveyor Helper [7.8 h]; less than 1.5 [93.23] | 56,071.92 | 56,071.92 | 0.0603343421083148 | Cons. | Z2 | Storm | Cons | CS.UNSC | UPVC | SUB.C | Mngmnt Rd | Strm |
| B6.33 42 11.35-131_R |  | Catch Basin Opening Prep.(Rem) | 2d | 2026-10-07 A | 2026-10-21 | B6.33 05 40.01.270_R SS, B6.33 42 11.35-131 | 79% | 0.42d | 2026-10-07 | 2026-10-08 | 112.9d |  | Labor [15.59 h]; Foreman [7.8 h]; Plumber Helper [7.8 h]; Plumber [7.8 h]; less than 1.5 [23.31] | 14,017.98 | 11,074.2 | 0.0150835855285905 | Cons. | Z2 | Storm | Cons | CS.UNSC | UPVC | SUB.C | Mngmnt Rd | Strm |
| B6.33 42 11.35-132_R |  | Fittings & Pipe Installation(Rem) | 2d | 2026-10-07 A | 2026-10-21 | B6.33 42 11.35-131_R SS, B6.33 42 11.35-132 | 79% | 0.42d | 2026-10-07 | 2026-10-08 | 105.32d | 112.9d | Labor [15.59 h]; Foreman [7.8 h]; Plumber Helper [7.8 h]; Plumber [7.8 h]; Surveyor [7.8 h]; Surveyor Helper [7.8 h]; less than 1.5 [93.23] | 56,071.92 | 44,296.82 | 0.0603343421083148 | Cons. | Z2 | Storm | Cons | CS.UNSC | UPVC | SUB.C | Mngmnt Rd | Strm |
|  | UPVC3001 | **?400 From 0.0 to 1.5m** |  | 2026-06-08 | 2026-10-21 |  |  |  |  |  |  |  |  |  |  |  |  |  |  |  |  |  |  |  |  |
| B6.33 42 11.36-121 |  | Catch Basin Opening Prep. (82.56% Completed) | 85.62d | 2026-06-08 A | 2026-09-15 A | B6.33 05 40.01.270 SS | 100% |  |  |  |  |  | Labor [25.74 h]; Foreman [12.87 h]; Plumber Helper [12.87 h]; Plumber [12.87 h]; less than 1.5 [38.48] | 23,145.14 | 23,145.14 | 0.0150835855285905 | Cons. | Z2 | Storm | Cons | CS.UNSC | UPVC | SUB.C | Mngmnt Rd | Strm |
| B6.33 42 11.36-122 |  | Fittings & Pipe Installation (67.00% Completed) | 73d | 2026-06-23 A | 2026-09-15 A | B6.33 42 11.36-121 SS | 100% |  |  |  |  |  | Labor [20.89 h]; Foreman [10.45 h]; Plumber Helper [10.45 h]; Plumber [10.45 h]; Surveyor [10.45 h]; Surveyor Helper [10.45 h]; less than 1.5 [124.93] | 75,136.38 | 75,136.38 | 0.0603343421083148 | Cons. | Z2 | Storm | Cons | CS.UNSC | UPVC | SUB.C | Mngmnt Rd | Strm |
| B6.33 42 11.36-121_R |  | Catch Basin Opening Prep.(Rem) | 2.09d | 2026-10-07 A | 2026-10-21 | B6.33 05 40.01.270_R SS, B6.33 42 11.36-121 | 79% | 0.44d | 2026-10-07 | 2026-10-10 | 112.88d |  | Labor [5.44 h]; Foreman [2.72 h]; Plumber Helper [2.72 h]; Plumber [2.72 h]; less than 1.5 [8.13] | 4,890.82 | 3,863.75 | 0.0150835855285905 | Cons. | Z2 | Storm | Cons | CS.UNSC | UPVC | SUB.C | Mngmnt Rd | Strm |
| B6.33 42 11.36-122_R |  | Fittings & Pipe Installation(Rem) | 3d | 2026-10-07 A | 2026-10-21 | B6.33 42 11.36-121_R SS, B6.33 42 11.36-122 | 79% | 0.63d | 2026-10-07 | 2026-10-10 | 105.32d | 112.69d | Labor [10.29 h]; Foreman [5.15 h]; Plumber Helper [5.15 h]; Plumber [5.15 h]; Surveyor [5.15 h]; Surveyor Helper [5.15 h]; less than 1.5 [61.53] | 37,007.47 | 29,235.9 | 0.0603343421083148 | Cons. | Z2 | Storm | Cons | CS.UNSC | UPVC | SUB.C | Mngmnt Rd | Strm |
|  | Potable Water | **Potable Water Network** |  | 2026-04-09 | 2026-11-04 |  |  |  |  |  |  |  |  |  |  |  |  |  |  |  |  |  |  |  |  |
|  | HDPE | **HDPE Pipes** |  | 2026-04-09 | 2026-10-24 |  |  |  |  |  |  |  |  |  |  |  |  |  |  |  |  |  |  |  |  |
|  | ?110mm | **?110mm** |  | 2026-04-09 | 2026-10-24 |  |  |  |  |  |  |  |  |  |  |  |  |  |  |  |  |  |  |  |  |
|  | Depth: 1.51m - 2.5m | **Depth: 1.51m - 2.5m** |  | 2026-04-09 | 2026-10-24 |  |  |  |  |  |  |  |  |  |  |  |  |  |  |  |  |  |  |  |  |
| B3.33 14 11.01.0110 |  | Excavation | 54.47d | 2026-04-09 A | 2026-06-16 A | DMM2-Proc-Delv-5818 | 100% |  |  |  |  |  | Labor [28.35 h]; Foreman [14.17 h]; Operator [28.35 h]; Surveyor [14.17 h]; Surveyor Helper [14.17 h]; Excavator (With Bucket) [16 h]; Water Tanker [16 h]; Dump Truck [16 h]; Plate Compactor [16 h]; Depth: 1.51m - 2.5m |  |  | 0.000145557831170628 | Cons. | Z2 | Potable | Cons | CS.UNSC | HDPEs | SUB.C | Mngmnt Rd | Pot |
| B3.33 14 11.01.0112 |  | Sand Bedding | 54.47d | 2026-04-11 A | 2026-06-17 A | B3.33 14 11.01.0110 | 100% |  |  |  |  |  | Labor [28.35 h]; Foreman [14.17 h]; Operator [56.7 h]; Surveyor [14.17 h]; Surveyor Helper [14.17 h]; Loader [16 h]; Water Tanker [16 h]; Dump Truck [16 h]; Plate Compactor [16 h]; Depth: 1.51m - 2.5m |  |  | 3.61452332437126E-005 | Cons. | Z2 | Potable | Cons | CS.UNSC | HDPEs | SUB.C | Mngmnt Rd | Pot |
| B3.33 14 11.01.0114 |  | Pipe Laying | 124.47d | 2026-04-13 A | 2026-09-09 A | B3.33 14 11.01.0112 | 100% |  |  |  |  |  | Labor [28.35 h]; Foreman [14.17 h]; Plumber Helper [14.17 h]; Plumber [14.17 h]; Operator [14.17 h]; Surveyor [14.17 h]; Surveyor Helper [14.17 h]; Mobile Crane [16 h]; Depth: 1.51m - 2.5m |  |  | 0.000327260895584966 | Cons. | Z2 | Potable | Cons | CS.UNSC | HDPEs | SUB.C | Mngmnt Rd | Pot |
| B3.33 14 11.01.0116 |  | Embedment & Test | 114.77d | 2026-04-27 A | 2026-09-12 A | B3.33 14 11.01.0114, B3.33 14 19.01.110 | 100% |  |  |  |  |  | Labor [56.7 h]; Foreman [28.35 h]; Plumber Helper [28.35 h]; Plumber [28.35 h]; Operator [56.7 h]; Surveyor [28.35 h]; Surveyor Helper [28.35 h]; Loader [32 h]; Water Tanker [32 h]; Dump Truck [32 h]; Plate Compactor [32 h]; Roller Compactor [32 h]; Depth: 1.51m - 2.5m |  |  | 0.000145557831170628 | Cons. | Z2 | Potable | Cons | CS.UNSC | HDPEs | SUB.C | Mngmnt Rd | Pot |
| B3.33 14 11.01.0118 |  | Backfilling & Warrning Tape (76.45% Completed) | 116d | 2026-04-29 A | 2026-09-15 A | B3.33 14 11.01.0116, B3.33 14 13.01.01.5 SS | 100% |  |  |  |  |  | Labor [59.6 h]; Foreman [29.8 h]; Operator [119.21 h]; Surveyor [29.8 h]; Surveyor Helper [29.8 h]; Loader [30.58 h]; Water Tanker [30.58 h]; Dump Truck [30.58 h]; Plate Compactor [30.58 h]; Roller Compactor [30.58 h]; Depth: 1.51m - 2.5m |  |  | 7.27789155853129E-005 | Cons. | Z2 | Potable | Cons | CS.UNSC | HDPEs | SUB.C | Mngmnt Rd | Pot |
| B3.33 14 11.01.0118_R |  | Backfilling & Warrning Tape(Rem) | 2.18d | 2026-10-21 | 2026-10-24 | B3.33 14 11.01.0116, B3.33 14 13.01.01.5_R SS, B3.33 14 11.01.0118 |  |  |  |  | 93.52d | 0d | Labor [18.36 h]; Foreman [9.18 h]; Operator [36.72 h]; Surveyor [9.18 h]; Surveyor Helper [9.18 h]; Loader [9.42 h]; Water Tanker [9.42 h]; Dump Truck [9.42 h]; Plate Compactor [9.42 h]; Roller Compactor [9.42 h]; Depth: 1.51m - 2.5m |  |  | 7.27789155853129E-005 | Cons. | Z2 | Potable | Cons | CS.UNSC | HDPEs | SUB.C | Mngmnt Rd | Pot |

| ID | WBS | Activity | Duration | Start | Finish | Predecessors | Complete | Total float | Free float | Resources | Cost | Actual cost | Weight % | DMM2 Weekly Progress | DMM2 Zones | Networks & Stations | DMM2 Phases | UNASCO | Subcontractors works | Dmm2 Roads | Yellow Sheet | Networks Components |
| --- | --- | --- | --- | --- | --- | --- | --- | --- | --- | --- | --- | --- | --- | --- | --- | --- | --- | --- | --- | --- | --- | --- |
|  | Crossing | **Plots and Buildings Crossing** |  | 2026-10-21 | 2026-11-04 |  |  |  |  |  |  |  |  |  |  |  |  |  |  |  |  |  |
| B3.33 14 13.02.19 |  | Earthwork | 5d | 2026-10-21 | 2026-10-26 | B3.33 14 11.01.0110 |  | 86.32d | 0d | Labor [62.37 h]; Foreman [31.18 h]; Operator [62.37 h]; Surveyor [31.18 h]; Surveyor Helper [31.18 h]; Excavator (With Bucket) [32 h]; Water Tanker [32 h]; Dump Truck [32 h]; Plate Compactor [32 h]; Potable Plots and Buildings Crossing Connections Dia. 110 mm [0.6] | 268.67 |  | 0.000135073084407666 | Cons. | Z2 | Potable | Cons | CS.UNSC | SUB.C | Mngmnt Rd | Pot |  |
| B3.33 14 13.02.20 |  | Sand Bedding | 3d | 2026-10-27 | 2026-10-29 | B3.33 14 13.02.19 |  | 86.32d | 0d | Labor [31.18 h]; Foreman [15.59 h]; Operator [62.37 h]; Surveyor [15.59 h]; Surveyor Helper [15.59 h]; Loader [16 h]; Water Tanker [16 h]; Dump Truck [16 h]; Plate Compactor [16 h]; Potable Plots and Buildings Crossing Connections Dia. 110 mm [0.6] | 268.67 |  | 0.000135073084407666 | Cons. | Z2 | Potable | Cons | CS.UNSC | SUB.C | Mngmnt Rd | Pot |  |
| B3.33 14 13.02.21 |  | Tee, Pipe (Crossing) Installation & Backfilling | 5d | 2026-10-31 | 2026-11-04 | B3.33 14 13.02.20 |  | 86.32d | 2d | Labor [62.37 h]; Foreman [31.18 h]; Plumber Helper [31.18 h]; Plumber [31.18 h]; Operator [62.37 h]; Surveyor [31.18 h]; Surveyor Helper [31.18 h]; Mobile Crane [32 h]; Potable Plots and Buildings Crossing Connections Dia. 110 mm [1.8] | 806.01 |  | 0.000405219253223001 | Cons. | Z2 | Potable | Cons | CS.UNSC | SUB.C | Mngmnt Rd | Pot |  |
|  | Valves & Chambers | **Valves & Chambers** |  | 2026-09-02 | 2026-10-24 |  |  |  |  |  |  |  |  |  |  |  |  |  |  |  |  |  |
|  | GV | **Gate Valves** |  | 2026-09-02 | 2026-10-24 |  |  |  |  |  |  |  |  |  |  |  |  |  |  |  |  |  |
|  | 1 | **Gate valves dia (110) mm** |  | 2026-09-02 | 2026-10-24 |  |  |  |  |  |  |  |  |  |  |  |  |  |  |  |  |  |
| B3.33 14 19.01.110 |  | Burried Isolation Valve Installation | 8d | 2026-09-02 A | 2026-09-12 A | B3.33 14 11.01.0114 | 100% |  |  | Labor [28.35 h]; Plumber Helper [14.17 h]; Plumber [14.17 h]; Operator [28.35 h]; Boom Truck [16 h]; POT Gate V dia 110 mm [1.65] | 3,825.71 | 3,825.71 | 0.000737657950376926 | Cons. | Z2 | Potable | Cons | CS.UNSC | SUB.C | Mngmnt Rd | Pot | Val&Chs |
| B3.33 14 19.01.111 |  | Spindle & Surface Box | 3d | 2026-10-21 | 2026-10-24 | B3.33 14 19.01.110, B3.33 14 19.01.105 FF |  | 110.32d |  | Labor [31.18 h]; Foreman [15.59 h]; Plumber Helper [15.59 h]; Plumber [15.59 h]; Operator [31.18 h]; JCB [16 h]; POT Gate V dia 110 mm [1.1] | 2,550.47 |  | 0.000491771966917951 | Cons. | Z2 | Potable | Cons | CS.UNSC | SUB.C | Mngmnt Rd | Pot | Val&Chs |
|  | Fire Fighting | **Fire Fighting Network** |  | 2026-04-19 | 2026-11-04 |  |  |  |  |  |  |  |  |  |  |  |  |  |  |  |  |  |
|  | HDPE | **HDPE Pipes** |  | 2026-04-19 | 2026-09-14 |  |  |  |  |  |  |  |  |  |  |  |  |  |  |  |  |  |
|  | ?250mm | **?250mm** |  | 2026-04-19 | 2026-09-14 |  |  |  |  |  |  |  |  |  |  |  |  |  |  |  |  |  |
|  | Depth: 1.51m - 2.5m | **Depth: 1.51m - 2.5m** |  | 2026-04-19 | 2026-09-14 |  |  |  |  |  |  |  |  |  |  |  |  |  |  |  |  |  |
| B3.1. 33 14 13.0110 |  | Excavation | 44.24d | 2026-04-19 A | 2026-06-14 A | B3.33 14 11.01.0110 | 100% |  |  | Labor [28.35 h]; Foreman [14.17 h]; Operator [28.35 h]; Surveyor [14.17 h]; Surveyor Helper [14.17 h]; Excavator (With Bucket) [16 h]; Water Tanker [16 h]; Dump Truck [16 h]; Plate Compactor [16 h]; Depth: 1.51m - 2.5m [8.22] | 4,294.65 | 4,294.65 | 0.000399426118713958 | Cons. | Z2 | Fire | Cons | CS.UNSC | SUB.C | Mngmnt Rd | Fire | HDPEs |
| B3.1. 33 14 13.0112 |  | Sand Bedding | 44.24d | 2026-04-21 A | 2026-06-16 A | B3.1. 33 14 13.0110 | 100% |  |  | Labor [28.35 h]; Foreman [14.17 h]; Operator [56.7 h]; Surveyor [14.17 h]; Surveyor Helper [14.17 h]; Loader [16 h]; Water Tanker [16 h]; Dump Truck [16 h]; Plate Compactor [16 h]; Depth: 1.51m - 2.5m [2.06] | 1,073.66 | 1,073.66 | 9.98565296784896E-005 | Cons. | Z2 | Fire | Cons | CS.UNSC | SUB.C | Mngmnt Rd | Fire | HDPEs |
| B3.1. 33 14 13.0114 |  | Pipe Laying | 115.14d | 2026-04-23 A | 2026-09-09 A | B3.1. 33 14 13.0112 | 100% |  |  | Labor [28.35 h]; Foreman [14.17 h]; Plumber Helper [14.17 h]; Plumber [14.17 h]; Operator [14.17 h]; Surveyor [14.17 h]; Surveyor Helper [14.17 h]; Mobile Crane [16 h]; Depth: 1.51m - 2.5m [18.5] | 9,662.95 | 9,662.95 | 0.00089870876710641 | Cons. | Z2 | Fire | Cons | CS.UNSC | SUB.C | Mngmnt Rd | Fire | HDPEs |
| B3.1. 33 14 13.0116 |  | Embedment & Test | 116.28d | 2026-04-25 A | 2026-09-12 A | B3.1. 33 14 13.0114 | 100% |  |  | Labor [56.7 h]; Foreman [28.35 h]; Plumber Helper [28.35 h]; Plumber [28.35 h]; Operator [56.7 h]; Surveyor [28.35 h]; Surveyor Helper [28.35 h]; Loader [32 h]; Water Tanker [32 h]; Dump Truck [32 h]; Plate Compactor [32 h]; Roller Compactor [32 h]; Depth: 1.51m - 2.5m [8.22] | 4,294.65 | 4,294.65 | 0.000399426118713958 | Cons. | Z2 | Fire | Cons | CS.UNSC | SUB.C | Mngmnt Rd | Fire | HDPEs |
| B3.1. 33 14 13.0118 |  | Backfilling & Warrning Tape | 113.82d | 2026-04-30 A | 2026-09-14 A | B3.1. 33 14 13.0116 | 100% |  |  | Labor [56.7 h]; Foreman [28.35 h]; Operator [113.4 h]; Surveyor [28.35 h]; Surveyor Helper [28.35 h]; Loader [32 h]; Water Tanker [32 h]; Dump Truck [32 h]; Plate Compactor [32 h]; Roller Compactor [32 h]; Depth: 1.51m - 2.5m [4.11] | 2,147.32 | 2,147.32 | 0.00019971305935698 | Cons. | Z2 | Fire | Cons | CS.UNSC | SUB.C | Mngmnt Rd | Fire | HDPEs |
|  | Valves & Chambers | **Valves & Chambers** |  | 2026-08-17 | 2026-11-04 |  |  |  |  |  |  |  |  |  |  |  |  |  |  |  |  |  |
|  | GV | **Gate Valves** |  | 2026-08-17 | 2026-10-25 |  |  |  |  |  |  |  |  |  |  |  |  |  |  |  |  |  |
|  | 1 | **Gate valves dia (250) mm** |  | 2026-08-17 | 2026-10-25 |  |  |  |  |  |  |  |  |  |  |  |  |  |  |  |  |  |
| B3.33 14 19.01.127 |  | Spindle & Surface Box | 23d | 2026-08-17 A | 2026-09-13 A | B3.1. 33 14 13..19 | 100% |  |  | Labor [28.35 h]; Foreman [14.17 h]; Plumber Helper [14.17 h]; Plumber [14.17 h]; Operator [28.35 h]; JCB [16 h]; FF Gate V dia 250 mm [1.25] | 5,017.11 | 5,017.11 | 0.000962236816893557 | Cons. | Z2 | Fire | Cons | CS.UNSC | SUB.C | Mngmnt Rd | Fire | Val&Chs |
| B3.33 14 19.01.126 |  | Burried Isolation Valve Installation | 4d | 2026-10-21 | 2026-10-25 | B3.1. 33 14 13.0114 |  | 86.32d | 0d | Labor [31.18 h]; Plumber Helper [15.59 h]; Plumber [15.59 h]; Operator [31.18 h]; Boom Truck [16 h]; FF Gate V dia 250 mm [1.88] | 7,525.67 |  | 0.00144335522534034 | Cons. | Z2 | Fire | Cons | CS.UNSC | SUB.C | Mngmnt Rd | Fire | Val&Chs |
|  | 2 | **Air Valves** |  | 2026-09-07 | 2026-10-31 |  |  |  |  |  |  |  |  |  |  |  |  |  |  |  |  |  |
|  | 4 | **Air valves on less than 315 mm. (In Chamber)** |  | 2026-09-07 | 2026-10-31 |  |  |  |  |  |  |  |  |  |  |  |  |  |  |  |  |  |
| B3.33 05 63.02.52 |  | Land Adjustment & Compaction (75.00% Completed) | 7.2d | 2026-09-07 A | 2026-09-15 A | B3.1. 33 14 13.0116 SS | 100% |  |  | Labor [23.39 h]; Foreman [11.69 h]; Operator [46.78 h]; Surveyor [11.69 h]; Surveyor Helper [11.69 h]; Excavator (With Bucket) [12 h]; Water Tanker [12 h]; Dump Truck [12 h]; Plate Compactor [12 h]; FF Air valve Dia. 50 mm on pipes with Dia. less than 315 mm [0.14]; FF Air valve chamber; on less than 315 mm Dia. pipeline [0.14] | 3,364.2 | 3,364.2 | 0.000842899444995834 | Cons. | Z2 | Fire | Cons | CS.UNSC | SUB.C | Mngmnt Rd | Fire | Val&Chs |
| B3.33 05 63.02.50 |  | Foundations (75.00% Completed) | 4.2d | 2026-09-10 A | 2026-09-15 A | B3.33 05 63.02.52 SS | 100% |  |  | Labor [35.08 h]; Foreman [17.54 h]; Laboratory Officer [17.54 h]; Carpenter [17.54 h]; Steelfixer [17.54 h]; Mason [17.54 h]; FF Air valve Dia. 50 mm on pipes with Dia. less than 315 mm [0.14]; FF Air valve chamber; on less than 315 mm Dia. pipeline [0.18] | 4,365.93 | 4,365.93 | 0.00109388285056526 | Cons. | Z2 | Fire | Cons | CS.UNSC | SUB.C | Mngmnt Rd | Fire | Val&Chs |
| B3.33 05 63.02.53 |  | Chambers Walls Conc Cast In Situ (75.00% Completed) | 3.2d | 2026-09-12 A | 2026-09-15 A | B3.33 05 63.02.50 SS | 100% |  |  | Labor [35.08 h]; Foreman [17.54 h]; Laboratory Officer [17.54 h]; Carpenter [17.54 h]; Steelfixer [17.54 h]; Mason [17.54 h]; FF Air valve Dia. 50 mm on pipes with Dia. less than 315 mm [0.18]; FF Air valve chamber; on less than 315 mm Dia. pipeline [0.18] | 4,485.6 | 4,485.6 | 0.00112386592666111 | Cons. | Z2 | Fire | Cons | CS.UNSC | SUB.C | Mngmnt Rd | Fire | Val&Chs |
| B3.33 05 63.02.51 |  | Chamber Curing, Finishing & Steel Cover (75.00% Completed) | 1.2d | 2026-09-14 A | 2026-09-15 A | B3.33 05 63.02.53 SS | 100% |  |  | Labor [46.78 h]; Mason [23.39 h]; FF Air valve Dia. 50 mm on pipes with Dia. less than 315 mm [0.18]; FF Air valve chamber; on less than 315 mm Dia. pipeline [0.14] | 3,483.87 | 3,483.87 | 0.000872882521091683 | Cons. | Z2 | Fire | Cons | CS.UNSC | SUB.C | Mngmnt Rd | Fire | Val&Chs |
| B3.33 05 63.02.50_R |  | Foundations(Rem) | 3d | 2026-10-21 | 2026-10-24 | B3.33 05 63.02.52_R SS, B3.33 05 63.02.50 |  | 98.32d | 0d | Labor [11.69 h]; Foreman [5.85 h]; Laboratory Officer [5.85 h]; Carpenter [5.85 h]; Steelfixer [5.85 h]; Mason [5.85 h]; FF Air valve Dia. 50 mm on pipes with Dia. less than 315 mm [0.05]; FF Air valve chamber; on less than 315 mm Dia. pipeline [0.06] | 1,455.31 |  | 0.00109388285056526 | Cons. | Z2 | Fire | Cons | CS.UNSC | SUB.C | Mngmnt Rd | Fire | Val&Chs |
| B3.33 05 63.02.51_R |  | Chamber Curing, Finishing & Steel Cover(Rem) | 3d | 2026-10-21 | 2026-10-24 | B3.33 05 63.02.53_R SS, B3.33 05 63.02.51 |  | 98.32d | 0d | Labor [15.59 h]; Mason [7.8 h]; FF Air valve Dia. 50 mm on pipes with Dia. less than 315 mm [0.06]; FF Air valve chamber; on less than 315 mm Dia. pipeline [0.05] | 1,161.29 |  | 0.000872882521091683 | Cons. | Z2 | Fire | Cons | CS.UNSC | SUB.C | Mngmnt Rd | Fire | Val&Chs |
| B3.33 05 63.02.52_R |  | Land Adjustment & Compaction(Rem) | 3d | 2026-10-21 | 2026-10-24 | B3.1. 33 14 13.0116 SS, B3.33 05 63.02.52 |  | 98.32d | 0d | Labor [7.8 h]; Foreman [3.9 h]; Operator [15.59 h]; Surveyor [3.9 h]; Surveyor Helper [3.9 h]; Excavator (With Bucket) [4 h]; Water Tanker [4 h]; Dump Truck [4 h]; Plate Compactor [4 h]; FF Air valve Dia. 50 mm on pipes with Dia. less than 315 mm [0.05]; FF Air valve chamber; on less than 315 mm Dia. pipeline [0.05] | 1,121.4 |  | 0.000842899444995834 | Cons. | Z2 | Fire | Cons | CS.UNSC | SUB.C | Mngmnt Rd | Fire | Val&Chs |
| B3.33 05 63.02.53_R |  | Chambers Walls Conc Cast In Situ(Rem) | 3d | 2026-10-21 | 2026-10-24 | B3.33 05 63.02.50_R SS, B3.33 05 63.02.53 |  | 98.32d | 0d | Labor [11.69 h]; Foreman [5.85 h]; Laboratory Officer [5.85 h]; Carpenter [5.85 h]; Steelfixer [5.85 h]; Mason [5.85 h]; FF Air valve Dia. 50 mm on pipes with Dia. less than 315 mm [0.06]; FF Air valve chamber; on less than 315 mm Dia. pipeline [0.06] | 1,495.2 |  | 0.00112386592666111 | Cons. | Z2 | Fire | Cons | CS.UNSC | SUB.C | Mngmnt Rd | Fire | Val&Chs |
| B3.33 05 63.02.54 |  | Valve & Fitting Installation | 6d | 2026-10-25 | 2026-10-31 | B3.33 05 63.02.51_R, B3.1. 33 14 13.0118, B3.1. 33 14 13-01102, B3.1. 33 14 13-01100 |  | 98.32d | 15d | Labor [62.37 h]; Plumber Helper [31.18 h]; Plumber [31.18 h]; Operator [62.37 h]; Boom Truck [32 h]; FF Air valve Dia. 50 mm on pipes with Dia. less than 315 mm [0.38]; FF Air valve chamber; on less than 315 mm Dia. pipeline [0.38] | 9,344.99 |  | 0.001756040510408 | Cons. | Z2 | Fire | Cons | CS.UNSC | SUB.C | Mngmnt Rd | Fire | Val&Chs |

| ID | WBS | Activity | Duration | Start | Finish | Predecessors | Complete | Planned start | Planned finish | Total float | Free float | Resources | Cost | Actual cost | Weight % | DMM2 Weekly Progress | DMM2 Zones | Networks & Stations | DMM2 Phases | UNASCO | Networks Components | Subcontractors works | Dmm2 Roads | Yellow Sheet |
| --- | --- | --- | --- | --- | --- | --- | --- | --- | --- | --- | --- | --- | --- | --- | --- | --- | --- | --- | --- | --- | --- | --- | --- | --- |
|  | Washout Valves | **Washout Valves** |  | 2026-09-07 | 2026-11-04 |  |  |  |  |  |  |  |  |  |  |  |  |  |  |  |  |  |  |  |
|  | 4 | **Washout valves on 110-400 mm. (In Chamber)** |  | 2026-09-07 | 2026-11-04 |  |  |  |  |  |  |  |  |  |  |  |  |  |  |  |  |  |  |  |
| B3.33 05 63.01.47 |  | Land Adjustment & Compaction | 1d | 2026-09-07 A | 2026-09-08 A | B3.1. 33 14 13.0116 SS | 100% |  |  |  |  | Labor [28.35 h]; Foreman [14.17 h]; Operator [56.7 h]; Surveyor [14.17 h]; Surveyor Helper [14.17 h]; Excavator (With Bucket) [16 h]; Water Tanker [16 h]; Dump Truck [16 h]; Plate Compactor [16 h]; FF Wash out valve Dia. 100 mm on pipes with Dia. 110-400 mm [0.19]; FF Wash out valve chamber; on 110-400 mm Dia. pipeline [0.21] | 7,932 | 7,932 | 0.00140430274510935 | Cons. | Z2 | Fire | Cons | CS.UNSC | Val&Chs | SUB.C | Mngmnt Rd | Fire |
| B3.33 05 63.01.45 |  | Foundations | 1d | 2026-09-10 A | 2026-09-12 A | B3.33 05 63.01.47 | 100% |  |  |  |  | Labor [42.52 h]; Foreman [21.26 h]; Laboratory Officer [21.26 h]; Carpenter [21.26 h]; Steelfixer [21.26 h]; Mason [21.26 h]; FF Wash out valve Dia. 100 mm on pipes with Dia. 110-400 mm [0.19]; FF Wash out valve chamber; on 110-400 mm Dia. pipeline [0.26] | 9,649.37 | 9,649.37 | 0.00179441315636236 | Cons. | Z2 | Fire | Cons | CS.UNSC | Val&Chs | SUB.C | Mngmnt Rd | Fire |
| B3.33 05 63.01.46 |  | Chamber Curing, Finishing & Steel Cover | 2d | 2026-09-12 A | 2026-09-14 A | B3.33 05 63.01.48 | 100% |  |  |  |  | Labor; Mason; FF Wash out valve Dia. 100 mm on pipes with Dia. 110-400 mm; FF Wash out valve chamber; on 110-400 mm Dia. pipeline |  |  | 0.00144628548619767 | Cons. | Z2 | Fire | Cons | CS.UNSC | Val&Chs | SUB.C | Mngmnt Rd | Fire |
| B3.33 05 63.01.48 |  | Chambers Walls Conc Cast In Situ | 1d | 2026-09-12 A | 2026-09-13 A | B3.33 05 63.01.45 | 100% |  |  |  |  | Labor [42.52 h]; Foreman [21.26 h]; Laboratory Officer [21.26 h]; Carpenter [21.26 h]; Steelfixer [21.26 h]; Mason [21.26 h]; FF Wash out valve Dia. 100 mm on pipes with Dia. 110-400 mm [0.25]; FF Wash out valve chamber; on 110-400 mm Dia. pipeline [0.26] | 9,870.62 | 9,870.62 | 0.00183639589745068 | Cons. | Z2 | Fire | Cons | CS.UNSC | Val&Chs | SUB.C | Mngmnt Rd | Fire |
| B3.33 05 63.01.49 |  | Valve & Fitting Installation | 6d | 2026-10-28 | 2026-11-04 | B3.33 05 63.01.46, B3.33 14 19.01.fh27_R, B3.1. 33 14 13-01102, B3.1. 33 14 13-0196 |  |  |  | 94.37d | 11.05d | Labor [62.37 h]; Plumber Helper [31.18 h]; Plumber [31.18 h]; Operator [62.37 h]; Boom Truck [32 h]; FF Wash out valve Dia. 100 mm on pipes with Dia. 110-400 mm [0.39]; FF Wash out valve chamber; on 110-400 mm Dia. pipeline [0.39] | 14,801.26 |  | 0.00280860549021868 | Cons. | Z2 | Fire | Cons | CS.UNSC | Val&Chs | SUB.C | Mngmnt Rd | Fire |
|  | 3 | **Fire Hydrant** |  | 2026-06-09 | 2026-10-28 |  |  |  |  |  |  |  |  |  |  |  |  |  |  |  |  |  |  |  |
| B3.33 14 19.01.fh26 |  | Riser Pipe & Flanged Fittings Installation | 3d | 2026-06-09 A | 2026-06-13 A | B3.1. 33 14 13.0114 SS | 100% |  |  |  |  | Labor [28.35 h]; Plumber Helper [14.17 h]; Welder [14.17 h]; Plumber [14.17 h]; Surveyor [14.17 h]; Surveyor Helper [14.17 h]; Welding Machine [16 h]; 3-outlet fire hydrant (2 x 2.5 inch and 1 x 4.5 inch) in the form of a separate dry vacuum cylinder [1.49] | 16,415.29 | 16,415.29 | 0.00314407764631429 | Cons. | Z2 | Fire | Cons | CS.UNSC | FH | SUB.C | Mngmnt Rd | Fire |
| B3.33 14 19.01.fh25 |  | Firehydrant Fixing/Installation (1.00% Completed) | 75.59d | 2026-06-20 A | 2026-09-15 A | B3.33 14 19.01.fh26 | 100% |  |  |  |  | Labor [0.47 h]; Foreman [0.23 h]; Plumber Helper [0.23 h]; Plumber [0.23 h]; Operator [0.47 h]; Surveyor [0.23 h]; Surveyor Helper [0.23 h]; JCB [0.24 h]; 3-outlet fire hydrant (2 x 2.5 inch and 1 x 4.5 inch) in the form of a separate dry vacuum cylinder [0.04] | 492.46 | 492.46 | 0.0094322329389428 | Cons. | Z2 | Fire | Cons | CS.UNSC | FH | SUB.C | Mngmnt Rd | Fire |
| B3.33 14 19.01.fh27 |  | Backfilling & Compaction (1.00% Completed) | 72.59d | 2026-06-23 A | 2026-09-15 A | B3.33 14 19.01.fh25 SS | 100% |  |  |  |  | Labor [0.78 h]; Foreman [0.39 h]; Operator [0.78 h]; Surveyor [0.39 h]; Surveyor Helper [0.39 h]; Loader [0.4 h]; Water Tanker [0.4 h]; Dump Truck [0.4 h]; Plate Compactor [0.4 h]; 3-outlet fire hydrant (2 x 2.5 inch and 1 x 4.5 inch) in the form of a separate dry vacuum cylinder [0.01] | 164.15 | 164.15 | 0.00314407764631429 | Cons. | Z2 | Fire | Cons | CS.UNSC | FH | SUB.C | Mngmnt Rd | Fire |
| B3.33 14 19.01.fh25_R |  | Firehydrant Fixing/Installation(Rem) | 4.97d | 2026-10-21 | 2026-10-26 | B3.33 14 19.01.fh26, B3.33 14 19.01.fh25 |  |  |  | 94.37d | 0d | Labor [46.31 h]; Foreman [23.15 h]; Plumber Helper [23.15 h]; Plumber [23.15 h]; Operator [46.31 h]; Surveyor [23.15 h]; Surveyor Helper [23.15 h]; JCB [23.76 h]; 3-outlet fire hydrant (2 x 2.5 inch and 1 x 4.5 inch) in the form of a separate dry vacuum cylinder [4.43] | 48,753.4 |  | 0.0094322329389428 | Cons. | Z2 | Fire | Cons | CS.UNSC | FH | SUB.C | Mngmnt Rd | Fire |
| B3.33 14 19.01.fh27_R |  | Backfilling & Compaction(Rem) | 6.95d | 2026-10-21 | 2026-10-28 | B3.33 14 19.01.fh25_R SS, B3.33 14 19.01.fh27 |  |  |  | 94.37d | 0d | Labor [77.18 h]; Foreman [38.59 h]; Operator [77.18 h]; Surveyor [38.59 h]; Surveyor Helper [38.59 h]; Loader [39.6 h]; Water Tanker [39.6 h]; Dump Truck [39.6 h]; Plate Compactor [39.6 h]; 3-outlet fire hydrant (2 x 2.5 inch and 1 x 4.5 inch) in the form of a separate dry vacuum cylinder [1.48] | 16,251.13 |  | 0.00314407764631429 | Cons. | Z2 | Fire | Cons | CS.UNSC | FH | SUB.C | Mngmnt Rd | Fire |
|  | TSE Network | **TSE Network** |  | 2026-06-04 | 2026-11-16 |  |  |  |  |  |  |  |  |  |  |  |  |  |  |  |  |  |  |  |
|  | HDPE | **HDPE Pipes** |  | 2026-06-04 | 2026-10-29 |  |  |  |  |  |  |  |  |  |  |  |  |  |  |  |  |  |  |  |
|  | ?125mm | **?125mm** |  | 2026-06-04 | 2026-10-29 |  |  |  |  |  |  |  |  |  |  |  |  |  |  |  |  |  |  |  |
|  | Depth: 0.0m - 1.5m | **Depth: 0.0m - 1.5m** |  | 2026-06-04 | 2026-10-29 |  |  |  |  |  |  |  |  |  |  |  |  |  |  |  |  |  |  |  |
| B4.33 14 13.0110 |  | Excavation (17.89% Completed) | 89d | 2026-06-04 A | 2026-09-15 A | B3.1. 33 14 13.0110 | 100% |  |  |  |  | Labor [8.37 h]; Foreman [4.18 h]; Operator [8.37 h]; Surveyor [4.18 h]; Surveyor Helper [4.18 h]; Excavator (With Bucket) [4.29 h]; Water Tanker [4.29 h]; Dump Truck [4.29 h]; Plate Compactor [4.29 h]; Dia. 125mm 0.0m - 1.5m [14.45] | 2,233.04 | 2,233.04 | 0.00360324608999108 | Cons. | Z2 | TSE | Cons | CS.UNSC | HDPEs | SUB.C | Mngmnt Rd | TSE |
| B4.33 14 13.0112 |  | Sand Bedding (17.89% Completed) | 87d | 2026-06-07 A | 2026-09-15 A | B4.33 14 13.0110 FF | 100% |  |  |  |  | Labor [5.58 h]; Foreman [2.79 h]; Operator [11.15 h]; Surveyor [2.79 h]; Surveyor Helper [2.79 h]; Loader [2.86 h]; Water Tanker [2.86 h]; Dump Truck [2.86 h]; Plate Compactor [2.86 h]; Dia. 125mm 0.0m - 1.5m [3.61] | 558.4 | 558.4 | 0.000901031931482963 | Cons. | Z2 | TSE | Cons | CS.UNSC | HDPEs | SUB.C | Mngmnt Rd | TSE |
| B4.33 14 13.0114 |  | Pipe Laying (17.89% Completed) | 85d | 2026-06-09 A | 2026-09-15 A | B4.33 14 13.0112 FF | 100% |  |  |  |  | Labor [5.58 h]; Foreman [2.79 h]; Plumber Helper [2.79 h]; Plumber [2.79 h]; Operator [2.79 h]; Surveyor [2.79 h]; Surveyor Helper [2.79 h]; Mobile Crane [2.86 h]; Dia. 125mm 0.0m - 1.5m [32.51] | 5,024.47 | 5,024.47 | 0.00810752411146515 | Cons. | Z2 | TSE | Cons | CS.UNSC | HDPEs | SUB.C | Mngmnt Rd | TSE |
| B4.33 14 13.0116 |  | Embedment & Test (17.89% Completed) | 81d | 2026-06-14 A | 2026-09-15 A | B4.33 14 13.0114 FF, B3.33 14 19.01.142 SS | 100% |  |  |  |  | Labor [11.15 h]; Foreman [5.58 h]; Plumber Helper [5.58 h]; Plumber [5.58 h]; Operator [11.15 h]; Surveyor [5.58 h]; Surveyor Helper [5.58 h]; Loader [5.72 h]; Water Tanker [5.72 h]; Dump Truck [5.72 h]; Plate Compactor [5.72 h]; Roller Compactor [5.72 h]; Dia. 125mm 0.0m - 1.5m [14.45] | 2,233.04 | 2,233.04 | 0.00360324608999108 | Cons. | Z2 | TSE | Cons | CS.UNSC | HDPEs | SUB.C | Mngmnt Rd | TSE |
| B4.33 14 13.0118 |  | Backfilling & Warrning Tape (17.89% Completed) | 76d | 2026-06-19 A | 2026-09-15 A | B4.33 14 13.0116 SS | 100% | 2026-06-20 | 2026-09-15 |  |  | Labor [13.94 h]; Foreman [6.97 h]; Operator [27.89 h]; Surveyor [6.97 h]; Surveyor Helper [6.97 h]; Loader [7.15 h]; Water Tanker [7.15 h]; Dump Truck [7.15 h]; Plate Compactor [7.15 h]; Roller Compactor [7.15 h]; Dia. 125mm 0.0m - 1.5m [7.23] | 1,116.52 | 1,116.52 | 0.00180162304499554 | Cons. | Z2 | TSE | Cons | CS.UNSC | HDPEs | SUB.C | Mngmnt Rd | TSE |
| B4.33 14 13.0110_R |  | Excavation(Rem) | 3.46d | 2026-10-22 | 2026-10-26 | B3.33 05 63.02.89 FF, B3.1. 33 14 13.0110, B4.33 14 13.0110 |  |  |  | 25.32d | 0d | Labor [38.41 h]; Foreman [19.21 h]; Operator [38.41 h]; Surveyor [19.21 h]; Surveyor Helper [19.21 h]; Excavator (With Bucket) [19.71 h]; Water Tanker [19.71 h]; Dump Truck [19.71 h]; Plate Compactor [19.71 h]; Dia. 125mm 0.0m - 1.5m [66.35] | 10,252.5 |  | 0.00360324608999108 | Cons. | Z2 | TSE | Cons | CS.UNSC | HDPEs | SUB.C | Mngmnt Rd | TSE |
| B4.33 14 13.0112_R |  | Sand Bedding(Rem) | 2.64d | 2026-10-24 | 2026-10-26 | B4.33 14 13.0110_R FF, B4.33 14 13.0112 |  |  |  | 25.32d | 0d | Labor [25.61 h]; Foreman [12.8 h]; Operator [51.21 h]; Surveyor [12.8 h]; Surveyor Helper [12.8 h]; Loader [13.14 h]; Water Tanker [13.14 h]; Dump Truck [13.14 h]; Plate Compactor [13.14 h]; Dia. 125mm 0.0m - 1.5m [16.59] | 2,563.75 |  | 0.000901031931482963 | Cons. | Z2 | TSE | Cons | CS.UNSC | HDPEs | SUB.C | Mngmnt Rd | TSE |
| B4.33 14 13.0114_R |  | Pipe Laying(Rem) | 2.64d | 2026-10-24 | 2026-10-26 | B4.33 14 13.0112_R FF, B4.33 14 13.0114 |  |  |  | 25.32d | 0d | Labor [25.61 h]; Foreman [12.8 h]; Plumber Helper [12.8 h]; Plumber [12.8 h]; Operator [12.8 h]; Surveyor [12.8 h]; Surveyor Helper [12.8 h]; Mobile Crane [13.14 h]; Dia. 125mm 0.0m - 1.5m [149.29] | 23,068.76 |  | 0.00810752411146515 | Cons. | Z2 | TSE | Cons | CS.UNSC | HDPEs | SUB.C | Mngmnt Rd | TSE |
| B4.33 14 13.0116_R |  | Embedment & Test(Rem) | 4.29d | 2026-10-24 | 2026-10-28 | B4.33 14 13.0114_R FF, B3.33 14 19.01.142_R SS, B4.33 14 13.0116 |  |  |  | 93.86d | 0d | Labor [51.21 h]; Foreman [25.61 h]; Plumber Helper [25.61 h]; Plumber [25.61 h]; Operator [51.21 h]; Surveyor [25.61 h]; Surveyor Helper [25.61 h]; Loader [26.28 h]; Water Tanker [26.28 h]; Dump Truck [26.28 h]; Plate Compactor [26.28 h]; Roller Compactor [26.28 h]; Dia. 125mm 0.0m - 1.5m [66.35] | 10,252.5 |  | 0.00360324608999108 | Cons. | Z2 | TSE | Cons | CS.UNSC | HDPEs | SUB.C | Mngmnt Rd | TSE |
| B4.33 14 13.0118_R |  | Backfilling & Warrning Tape(Rem) | 5.11d | 2026-10-24 | 2026-10-29 | B3.33 14 19.01.143 FF, B3.33 14 19.01.163 FF, B4.33 14 13.0116_R SS, B4.33 14 13.0118 |  |  |  | 93.86d | 0d | Labor [64.02 h]; Foreman [32.01 h]; Operator [128.04 h]; Surveyor [32.01 h]; Surveyor Helper [32.01 h]; Loader [32.85 h]; Water Tanker [32.85 h]; Dump Truck [32.85 h]; Plate Compactor [32.85 h]; Roller Compactor [32.85 h]; Dia. 125mm 0.0m - 1.5m [33.17] | 5,126.25 |  | 0.00180162304499554 | Cons. | Z2 | TSE | Cons | CS.UNSC | HDPEs | SUB.C | Mngmnt Rd | TSE |

| ID | WBS | Activity | Duration | Start | Finish | Predecessors | Complete | Planned start | Planned finish | Total float | Free float | Resources | Cost | Actual cost | Weight % | DMM2 Weekly Progress | DMM2 Zones | Networks & Stations | DMM2 Phases | UNASCO | Networks Components | Subcontractors works | Dmm2 Roads | Yellow Sheet |
| --- | --- | --- | --- | --- | --- | --- | --- | --- | --- | --- | --- | --- | --- | --- | --- | --- | --- | --- | --- | --- | --- | --- | --- | --- |
|  | Valves & Chambers | **Valves & Chambers** |  | 2026-06-12 | 2026-11-16 |  |  |  |  |  |  |  |  |  |  |  |  |  |  |  |  |  |  |  |
|  | GV | **Gate Valves** |  | 2026-06-12 | 2026-10-29 |  |  |  |  |  |  |  |  |  |  |  |  |  |  |  |  |  |  |  |
|  | GV 100 | **Gate valves dia (100) mm** |  | 2026-06-12 | 2026-10-29 |  |  |  |  |  |  |  |  |  |  |  |  |  |  |  |  |  |  |  |
| B3.33 14 19.01.142 |  | Burried Isolation Valve Installation (50.00% Completed) | 82d | 2026-06-12 A | 2026-09-15 A | B4.33 14 13.0114 SS | 100% | 2026-06-13 | 2026-09-15 |  |  | Labor [15.59 h]; Plumber Helper [7.8 h]; Plumber [7.8 h]; Operator [15.59 h]; Boom Truck [8 h]; TSE Gate V Dia. 100 mm [2.8] | 6,486.76 | 6,486.76 | 0.00232751888367418 | Cons. | Z2 | TSE | Cons | CS.UNSC | Val&Chs | SUB.C | Mngmnt Rd | TSE |
| B3.33 14 19.01.142_R |  | Burried Isolation Valve Installation(Rem) | 2d | 2026-10-24 | 2026-10-26 | B4.33 14 13.0114_R SS, B3.33 14 19.01.142 |  |  |  | 93.86d | 0d | Labor [15.59 h]; Plumber Helper [7.8 h]; Plumber [7.8 h]; Operator [15.59 h]; Boom Truck [8 h]; TSE Gate V Dia. 100 mm [2.8] | 6,486.76 |  | 0.00232751888367418 | Cons. | Z2 | TSE | Cons | CS.UNSC | Val&Chs | SUB.C | Mngmnt Rd | TSE |
| B3.33 14 19.01.143 |  | Spindle & Surface Box | 3d | 2026-10-26 | 2026-10-29 | B3.33 14 19.01.142_R |  |  |  | 93.96d | 0.11d | Labor [31.18 h]; Foreman [15.59 h]; Plumber Helper [15.59 h]; Plumber [15.59 h]; TSE Gate V Dia. 100 mm [2.4] | 5,565.35 |  | 0.000998452702939785 | Cons. | Z2 | TSE | Cons | CS.UNSC | Val&Chs | SUB.C | Mngmnt Rd | TSE |
|  | GV 150 | **Gate valves dia (150) mm** |  | 2026-06-14 | 2026-10-29 |  |  |  |  |  |  |  |  |  |  |  |  |  |  |  |  |  |  |  |
| B3.33 14 19.01.153 |  | Burried Isolation Valve Installation (50.00% Completed) | 81d | 2026-06-14 A | 2026-09-15 A | B3.33 14 19.01.142 SS | 100% |  |  |  |  | Labor [15.59 h]; Plumber Helper [7.8 h]; Plumber [7.8 h]; Operator [15.59 h]; Boom Truck [8 h]; TSE Gate V Dia. 150 mm [0.7] | 2,452.38 | 2,452.38 | 0.000939865059843813 | Cons. | Z2 | TSE | Cons | CS.UNSC | Val&Chs | SUB.C | Mngmnt Rd | TSE |
| B3.33 14 19.01.153_R |  | Burried Isolation Valve Installation(Rem) | 2d | 2026-10-24 | 2026-10-26 | B3.33 14 19.01.142_R SS, B3.33 14 19.01.153 |  |  |  | 93.96d | 0d | Labor [15.59 h]; Plumber Helper [7.8 h]; Plumber [7.8 h]; Operator [15.59 h]; Boom Truck [8 h]; TSE Gate V Dia. 150 mm [0.7] | 2,452.38 |  | 0.000939865059843813 | Cons. | Z2 | TSE | Cons | CS.UNSC | Val&Chs | SUB.C | Mngmnt Rd | TSE |
| B3.33 14 19.01.163 |  | Spindle & Surface Box | 3d | 2026-10-26 | 2026-10-29 | B3.33 14 19.01.153_R |  |  |  | 93.96d | 0.11d | Labor [31.18 h]; Foreman [15.59 h]; Plumber Helper [15.59 h]; Plumber [15.59 h]; TSE Gate V Dia. 150 mm [0.6] | 2,087.13 |  | 0.000399941553712918 | Cons. | Z2 | TSE | Cons | CS.UNSC | Val&Chs | SUB.C | Mngmnt Rd | TSE |
|  | Solenoid valves | **Solenoid valves** |  | 2026-10-27 | 2026-11-16 |  |  |  |  |  |  |  |  |  |  |  |  |  |  |  |  |  |  |  |
|  | Solenoid valve ?1.0 | **1 Solenoid valve ?1.0 inch with box** |  | 2026-10-31 | 2026-11-09 |  |  |  |  |  |  |  |  |  |  |  |  |  |  |  |  |  |  |  |
| B4.32 84 13.71 |  | Cable Laying Two-Wire Decoder (12 AWG) | 3d | 2026-10-31 | 2026-11-02 | B4.32 84 13.68 |  |  |  | 25.32d | 0d | Labor [31.18 h]; Electrician [15.59 h]; Two wire decoder cable 12 awg [350] | 4,917.51 |  | 0.00279720557352336 | Cons. | Z2 | TSE | Cons | CS.UNSC | Val&Chs | SUB.C | Mngmnt Rd | TSE |
| B4.32 84 13.72 |  | Solenoid Valve Box Installation | 3d | 2026-11-03 | 2026-11-05 | B4.32 84 13.71 |  |  |  | 28.32d | 0d | Labor [31.18 h]; Plumber Helper [15.59 h]; Plumber [15.59 h]; Solenoid Valve box. 1 Solenoid valve Dia. 1 inch. [1.99] | 2,838.8 |  | 0.000272525309346853 | Cons. | Z2 | TSE | Cons | CS.UNSC | Val&Chs | SUB.C | Mngmnt Rd | TSE |
| B4.32 84 13.73 |  | Bubblers Installation | 3d | 2026-11-07 | 2026-11-09 | B4.32 84 13.72, B4.32 84 13.79 |  |  |  | 28.32d | 3d | Labor [31.18 h]; Plumber Helper [15.59 h]; Plumber [15.59 h]; Bubbler [67] | 2,706.13 |  | 0.00134020323979369 | Cons. | Z2 | TSE | Cons | CS.UNSC | Val&Chs | SUB.C | Mngmnt Rd | TSE |
| B4.32 84 13.77 |  | Pull Box Installation | 3d | 2026-11-07 | 2026-11-09 | B4.32 84 13.71, B4.32 84 13.70 |  |  |  | 31.32d | 6d | Labor [31.18 h]; Plumber Helper [15.59 h]; Plumber [15.59 h]; Pull Box - 600mm (L) X 600mm (W) [3.43] | 3,696.63 |  | 0.00216822395144428 | Cons. | Z2 | TSE | Cons | CS.UNSC | Val&Chs | SUB.C | Mngmnt Rd | TSE |
|  | Solenoid valve ?1.5 | **1 Solenoid valve ?1.5 inch with box** |  | 2026-10-27 | 2026-11-16 |  |  |  |  |  |  |  |  |  |  |  |  |  |  |  |  |  |  |  |
| B4.33 14 13.09 |  | Extra flexible dripline with 3.0LPH | 3d | 2026-10-27 | 2026-10-29 | B4.33 14 13.0114_R |  |  |  | 31.32d | 0d | Labor [31.18 h]; Plumber Helper [15.59 h]; Plumber [15.59 h]; Extra flexible dripline [30895.1] | 135,629.4 |  | 2.20707654260891E-006 | Cons. | Z2 | TSE | Cons | CS.UNSC | Val&Chs | SUB.C | Mngmnt Rd | TSE |
| B4.32 84 13.04 |  | Dripper | 3d | 2026-10-31 | 2026-11-02 | B4.33 14 13.09 |  |  |  | 31.32d | 0d | Labor [31.18 h]; Plumber Helper [15.59 h]; Plumber [15.59 h]; Dripper [49432.1] | 651,021.11 |  | 6.62122962782675E-006 | Cons. | Z2 | TSE | Cons | CS.UNSC | Val&Chs | SUB.C | Mngmnt Rd | TSE |
| B4.32 84 13.74 |  | Cable Laying Two-Wire Decoder (12 AWG) | 3d | 2026-11-03 | 2026-11-05 | B4.32 84 13.71 |  |  |  | 25.32d | 0d | Labor [31.18 h]; Electrician [15.59 h]; Two wire decoder cable 12 awg [350] | 4,917.51 |  | 0.00279720557352336 | Cons. | Z2 | TSE | Cons | CS.UNSC | Val&Chs | SUB.C | Mngmnt Rd | TSE |
| B4.32 84 13.78 |  | Pull Box Installation | 3d | 2026-11-07 | 2026-11-09 | B4.32 84 13.74 |  |  |  | 25.32d | 0d | Labor [31.18 h]; Plumber Helper [15.59 h]; Plumber [15.59 h]; Pull Box - 600mm (L) X 600mm (W) [3.43] | 3,696.63 |  | 0.00216822395144428 | Cons. | Z2 | TSE | Cons | CS.UNSC | Val&Chs | SUB.C | Mngmnt Rd | TSE |
| B4.32 84 13.75 |  | Solenoid Valve Box Installation | 3d | 2026-11-10 | 2026-11-12 | B4.32 84 13.78 |  |  |  | 25.32d | 0d | Labor [31.18 h]; Plumber Helper [15.59 h]; Plumber [15.59 h]; Solenoid Valve box. 1 Solenoid valve Dia. 1.5 inch. [5.2] | 8,434.05 |  | 0.00105531822112046 | Cons. | Z2 | TSE | Cons | CS.UNSC | Val&Chs | SUB.C | Mngmnt Rd | TSE |
| B4.32 84 13.76 |  | Bubblers Installation | 3d | 2026-11-14 | 2026-11-16 | B4.32 84 13.75, B4.32 84 13.73 |  |  |  | 25.32d | 0d | Labor [31.18 h]; Plumber Helper [15.59 h]; Plumber [15.59 h]; Bubbler [67] | 2,706.13 |  | 0.00134020323979369 | Cons. | Z2 | TSE | Cons | CS.UNSC | Val&Chs | SUB.C | Mngmnt Rd | TSE |
|  | Solenoid valve ?2.0 | **1 Solenoid valve ?2.0 inch with box** |  | 2026-10-27 | 2026-11-05 |  |  |  |  |  |  |  |  |  |  |  |  |  |  |  |  |  |  |  |
| B4.32 84 13.68 |  | Cable Laying Two-Wire Decoder (12 AWG) | 3d | 2026-10-27 | 2026-10-29 | B4.33 14 13.0114_R |  |  |  | 25.32d | 0d | Labor [31.18 h]; Electrician [15.59 h]; Two wire decoder cable 12 awg [350] | 4,917.51 |  | 0.00279720557352336 | Cons. | Z2 | TSE | Cons | CS.UNSC | Val&Chs | SUB.C | Mngmnt Rd | TSE |
| B4.32 84 13.69 |  | Solenoid Valve Box Installation | 3d | 2026-10-31 | 2026-11-02 | B4.32 84 13.68 |  |  |  | 31.32d | 0d | Labor [31.18 h]; Plumber Helper [15.59 h]; Plumber [15.59 h]; Solenoid Valve box. 1 Solenoid valve Dia. 2.0inch. [2.79] | 5,829.6 |  | 0.000720076844983757 | Cons. | Z2 | TSE | Cons | CS.UNSC | Val&Chs | SUB.C | Mngmnt Rd | TSE |
| B4.32 84 13.79 |  | Pull Box Installation | 3d | 2026-10-31 | 2026-11-02 | B4.32 84 13.68 |  |  |  | 31.32d | 3d | Labor [31.18 h]; Plumber Helper [15.59 h]; Plumber [15.59 h]; Pull Box - 600mm (L) X 600mm (W) [2.57] | 2,772.47 |  | 0.0016261679635832 | Cons. | Z2 | TSE | Cons | CS.UNSC | Val&Chs | SUB.C | Mngmnt Rd | TSE |
| B4.32 84 13.70 |  | Bubblers Installation | 3d | 2026-11-03 | 2026-11-05 | B4.32 84 13.69, B4.32 84 13.04 |  |  |  | 31.32d | 0d | Labor [31.18 h]; Plumber Helper [15.59 h]; Plumber [15.59 h]; Bubbler [67] | 2,706.13 |  | 0.00134020323979369 | Cons. | Z2 | TSE | Cons | CS.UNSC | Val&Chs | SUB.C | Mngmnt Rd | TSE |

| ID | WBS | Activity | Duration | Start | Finish | Predecessors | Total float | Free float | Resources | Cost | Weight % | DMM2 Weekly Progress | DMM2 Zones | Networks & Stations | DMM2 Phases | Networks Components | All Electrical Scope | Subcontractors works | Dmm2 Roads | Yellow Sheet |
| --- | --- | --- | --- | --- | --- | --- | --- | --- | --- | --- | --- | --- | --- | --- | --- | --- | --- | --- | --- | --- |
|  | Dry Networks | **Dry Networks** |  | 2026-10-26 | 2026-12-21 |  |  |  |  |  |  |  |  |  |  |  |  |  |  |  |
|  | MV | **Medium Voltage Network** |  | 2026-10-26 | 2026-12-01 |  |  |  |  |  |  |  |  |  |  |  |  |  |  |  |
|  | Duct Banks | **Duct Banks** |  | 2026-10-29 | 2026-12-01 |  |  |  |  |  |  |  |  |  |  |  |  |  |  |  |
|  | 4 Way | **4 Way** |  | 2026-10-29 | 2026-12-01 |  |  |  |  |  |  |  |  |  |  |  |  |  |  |  |
| B2.31 23 00.639 |  | Excavation | 4d | 2026-10-29 | 2026-11-03 | B4.33 14 13.0118_R | 93.86d | 0d | Labor [46.78 h]; Foreman [23.39 h]; Operator [46.78 h]; Surveyor [23.39 h]; Surveyor Helper [23.39 h]; Excavator (With Bucket) [24 h]; Water Tanker [24 h]; Dump Truck [24 h]; Plate Compactor [24 h]; Excavation for Trench size 60cm wide and 80cm deep ( for 2 cables) [83.13]; Duct bank for MV cables UPVC (4xDia. 150mm) [2.75] | 3,411.59 | 0.00233790321174861 | Cons. | Z2 | MV | Cons | Cbl&Dct | allElec | SUB.C | Mngmnt Rd | MV |
| B2.33 71 00.286 |  | Shuttering, Steel Fixing Incl. UPVC Pipe & Conc. Cast | 4d | 2026-11-03 | 2026-11-08 | B2.31 23 00.639 | 93.86d | 16.54d | Labor [46.78 h]; Laboratory Officer [23.39 h]; Carpenter [23.39 h]; Steelfixer [23.39 h]; Mason [23.39 h]; Surveyor [23.39 h]; Surveyor Helper [23.39 h]; Excavation for Trench size 60cm wide and 80cm deep ( for 2 cables) [83.13]; Duct bank for MV cables UPVC (4xDia. 150mm) [8.25] | 6,439.38 | 0.00510557719618019 | Cons. | Z2 | MV | Cons | Cbl&Dct | allElec | SUB.C | Mngmnt Rd | MV |
| B2.33 71 00.287 |  | Backfilling & Warrning Tape | 4d | 2026-11-28 | 2026-12-01 | B2.33 71 00.286, B2.33 71 00.289, B2.33 71 00 02 45 | 77.32d | 14.41d | Labor [109.15 h]; Foreman [54.57 h]; Operator [218.29 h]; Surveyor [54.57 h]; Surveyor Helper [54.57 h]; Loader [56 h]; Water Tanker [56 h]; Dump Truck [56 h]; Plate Compactor [56 h]; Roller Compactor [56 h]; Excavation for Trench size 60cm wide and 80cm deep ( for 2 cables) [166.24]; Duct bank for MV cables UPVC (4xDia. 150mm) [2.75] | 5,308.83 | 0.003291739895321 | Cons. | Z2 | MV | Cons | Cbl&Dct | allElec | SUB.C | Mngmnt Rd | MV |
|  | Cables | **Cables** |  | 2026-10-26 | 2026-11-10 |  |  |  |  |  |  |  |  |  |  |  |  |  |  |  |
|  | 3C,500mm2 | **3C,500mm2** |  | 2026-10-26 | 2026-11-10 |  |  |  |  |  |  |  |  |  |  |  |  |  |  |  |
| B2.33 71 49.23.74 |  | Cable 13.8 kV Unarmored | 4d | 2026-10-26 | 2026-10-29 | B1.2.32 11 26.01.6 | 82.32d | 0d | Labor [46.78 h]; Foreman [23.39 h]; Operator [46.78 h]; Boom Truck [24 h]; Electrician [23.39 h]; Cable 13.8 kV 3Cx 500 mm² Al XLPE,/LLDPE / Unarmored [681.79] | 234,058.34 | 0.0447374191430308 | Cons. | Z2 | MV | Cons | Cbl&Dct | allElec | SUB.C | Mngmnt Rd | MV |
| B2.33 71 49.23.75 |  | Straight joints cables | 3d | 2026-10-31 | 2026-11-02 | B2.33 71 49.23.74 | 82.32d | 4d | Labor [31.18 h]; Foreman [15.59 h]; Electrician [15.59 h]; Straight joints cables for 13.8 kv 3Cx 500 mm², Al /XLPE/LLDPE [2] | 7,880.95 | 0.00396214380929156 | Cons. | Z2 | MV | Cons | Cbl&Dct | allElec | SUB.C | Mngmnt Rd | MV |
| B2.33 71 49.23.76 |  | Cable Termination | 3d | 2026-11-08 | 2026-11-10 | B2.33 71 49.23.75, B2.33 71 49.23.85 | 78.32d | 0d | Labor [31.18 h]; Foreman [15.59 h]; Electrician [15.59 h]; Cable Termination for 13.8 kv 3Cx 500 mm², Al /XLPE/LLDPE [0.91] | 3,058.5 | 0.00153766139892947 | Cons. | Z2 | MV | Cons | Cbl&Dct | allElec | SUB.C | Mngmnt Rd | MV |
|  | Street Lighting | **Street Lighting** |  | 2026-10-26 | 2026-11-15 |  |  |  |  |  |  |  |  |  |  |  |  |  |  |  |
|  | SL Poles | **SL Poles** |  | 2026-10-26 | 2026-11-10 |  |  |  |  |  |  |  |  |  |  |  |  |  |  |  |
|  | Pole (10 M Sngl Arm) | **Pole (10 M Single Arm)** |  | 2026-10-26 | 2026-11-10 |  |  |  |  |  |  |  |  |  |  |  |  |  |  |  |
| B2.33 71 16.51 |  | Excavation | 3d | 2026-10-26 | 2026-10-28 | B1.2.32 11 26.01.6 | 84.32d | 0d | Labor [46.78 h]; Foreman [23.39 h]; Operator [46.78 h]; Surveyor [23.39 h]; Surveyor Helper [23.39 h]; Excavator (With Bucket) [24 h]; Dump Truck [24 h]; Lighting poles with 1 arm, height of ( 10) meters [6.6] | 58,898.5 | 0.0112471278804954 | Cons. | Z2 | SL | Cons | Pls&Lmn | allElec | SUB.C | Mngmnt Rd | SL |
| B2.33 71 16.52 |  | PC & RC Foundation | 3d | 2026-10-29 | 2026-11-01 | B2.33 71 16.51 | 84.32d | 0d | Labor [77.96 h]; Foreman [38.98 h]; Laboratory Officer [38.98 h]; Carpenter [38.98 h]; Steelfixer [38.98 h]; Mason [38.98 h]; Lighting poles with 1 arm, height of ( 10) meters [6.6] | 58,898.5 | 0.0112471278804954 | Cons. | Z2 | SL | Cons | Pls&Lmn | allElec | SUB.C | Mngmnt Rd | SL |
| B2.33 71 16.53 |  | Lighting Poles Installation Incl power box, Cables | 3d | 2026-11-02 | 2026-11-04 | B2.33 71 16.52 | 84.32d | 0d | Labor [93.55 h]; Operator [93.55 h]; Mobile Crane [48 h]; Electrician [46.78 h]; Lighting poles with 1 arm, height of ( 10) meters [13.2] | 117,797 | 0.0224942557609906 | Cons. | Z2 | SL | Cons | Pls&Lmn | allElec | SUB.C | Mngmnt Rd | SL |
| B2.26.56.19.6 |  | Lighting Luminares Inst | 2d | 2026-11-05 | 2026-11-07 | B2.33 71 16.53 | 84.32d | 0d | Labor [62.37 h]; Operator [62.37 h]; Manlift [32 h]; Street Lighting( LED), Lamp Lumen: 14560, Luminare Lumen:12700 , complete with control gear and lamp, (80) WATT. [25] | 23,179.2 | 0.0047113256383061 | Cons. | Z2 | SL | Cons | Pls&Lmn | allElec | SUB.C | Mngmnt Rd | SL |
| B2.33 71 16.54 |  | Backfilling, Grouting & Chamfering | 3d | 2026-11-08 | 2026-11-10 | B2.26.56.19.6, B2.33 71 16.025 | 84.32d | 17d | Labor [93.55 h]; Foreman [46.78 h]; Mason [46.78 h]; Operator [93.55 h]; Surveyor [46.78 h]; Surveyor Helper [46.78 h]; Loader [48 h]; Water Tanker [48 h]; Dump Truck [48 h]; Plate Compactor [48 h]; Lighting poles with 1 arm, height of ( 10) meters [6.6] | 58,898.5 | 0.0112471278804954 | Cons. | Z2 | SL | Cons | Pls&Lmn | allElec | SUB.C | Mngmnt Rd | SL |
|  | Earthing | **Earthing** |  | 2026-11-05 | 2026-11-15 |  |  |  |  |  |  |  |  |  |  |  |  |  |  |  |
| B2.33 71 19 26 |  | Land Adjustment | 3d | 2026-11-05 | 2026-11-08 | B2.33 71 16.53 | 88.32d | 0d | Labor [46.78 h]; Foreman [23.39 h]; Operator [31.18 h]; Surveyor [7.8 h]; Surveyor Helper [7.8 h]; Excavator (With Bucket) [24 h]; Water Tanker [24 h]; Dump Truck [24 h]; Roller Compactor [24 h]; SL Earthing Including lighting poles circuits [0.45] | 904.39 | 0.000454679838542865 | Cons. | Z2 | SL | Cons | Cables | allElec | SUB.C | Mngmnt Rd | SL |
| B2.33 71 19 27 |  | Earth Rods & Conduits | 3d | 2026-11-09 | 2026-11-11 | B2.33 71 19 26 | 88.32d | 0d | Labor [46.78 h]; Foreman [23.39 h]; Electrician [23.39 h]; SL Earthing Including lighting poles circuits [1.33] | 2,672.96 | 0.00134383152280447 | Cons. | Z2 | SL | Cons | Cables | allElec | SUB.C | Mngmnt Rd | SL |
| B2.33 71 19 28 |  | Backfilling | 3d | 2026-11-12 | 2026-11-15 | B2.33 71 19 27 | 88.32d | 9.32d | Labor [93.55 h]; Foreman [46.78 h]; Operator [93.55 h]; Surveyor [46.78 h]; Surveyor Helper [46.78 h]; Loader [48 h]; Water Tanker [48 h]; Dump Truck [48 h]; Plate Compactor [48 h]; SL Earthing Including lighting poles circuits [0.45] | 904.39 | 0.000454679838542865 | Cons. | Z2 | SL | Cons | Cables | allElec | SUB.C | Mngmnt Rd | SL |

| ID | WBS | Activity | Duration | Start | Finish | Predecessors | Total float | Free float | Resources | Cost | Weight % | DMM2 Weekly Progress | DMM2 Zones | Networks & Stations | DMM2 Phases | Networks Components | All Electrical Scope | Subcontractors works | Dmm2 Roads | Yellow Sheet |
| --- | --- | --- | --- | --- | --- | --- | --- | --- | --- | --- | --- | --- | --- | --- | --- | --- | --- | --- | --- | --- |
|  | Telecommunication | **Telecommunication Network** |  | 2026-12-07 | 2026-12-21 |  |  |  |  |  |  |  |  |  |  |  |  |  |  |  |
|  | Ducts | **Ducts** |  | 2026-12-07 | 2026-12-20 |  |  |  |  |  |  |  |  |  |  |  |  |  |  |  |
|  | (6*50mm) | **Size (6*50mm) HDPE ducts** |  | 2026-12-07 | 2026-12-13 |  |  |  |  |  |  |  |  |  |  |  |  |  |  |  |
| B2.1.33 81 26.105 |  | Excavation | 2d | 2026-12-07 | 2026-12-08 | DMM2-Proc-Delv-6508, DMM2-Proc-Delv-6498, DMM2-Proc-Delv-6508 FF, B2.31 23 00.609 | 60.32d | 0d | Labor [31.18 h]; Foreman [15.59 h]; Operator [31.18 h]; Surveyor [15.59 h]; Surveyor Helper [15.59 h]; Excavator (With Bucket) [16 h]; Water Tanker [16 h]; Dump Truck [16 h]; Plate Compactor [16 h]; (6*50mm) HDPE ducts [125.82] | 35,460.35 | 0.00690393952512995 | Cons. | Z2 | Telecom | Cons | DCT&MNH | allElec | SUB.C | Mngmnt Rd | TEL |
| B2.1.33 81 26.106 |  | HDPE Pipe, Shuttering, Steel Fixing & Conc. Cast | 2d | 2026-12-09 | 2026-12-10 | B2.1.33 81 26.105 | 65.32d | 0d | Labor [109.15 h]; Laboratory Officer [54.57 h]; Carpenter [54.57 h]; Steelfixer [54.57 h]; Mason [54.57 h]; Surveyor [54.57 h]; Surveyor Helper [54.57 h]; (6*50mm) HDPE ducts [377.45] | 106,381.04 | 0.0207118185753898 | Cons. | Z2 | Telecom | Cons | DCT&MNH | allElec | SUB.C | Mngmnt Rd | TEL |
| B2.1.33 81 26.107 |  | Backfilling & Warrning Tape | 2d | 2026-12-12 | 2026-12-13 | B2.1.33 81 26.106, B2.1.33 81 26.43_R | 65.32d | 5d | Labor [77.96 h]; Foreman [38.98 h]; Operator [155.92 h]; Surveyor [38.98 h]; Surveyor Helper [38.98 h]; Loader [40 h]; Water Tanker [40 h]; Dump Truck [40 h]; Plate Compactor [40 h]; Roller Compactor [40 h]; (6*50mm) HDPE ducts [125.82] | 35,460.35 | 0.00690393952512995 | Cons. | Z2 | Telecom | Cons | DCT&MNH | allElec | SUB.C | Mngmnt Rd | TEL |
|  | (6*50mm+2*32mm) | **Size (6*50mm+2*32mm) HDPE ducts** |  | 2026-12-09 | 2026-12-14 |  |  |  |  |  |  |  |  |  |  |  |  |  |  |  |
| B2.1.33 81 26.108 |  | Excavation | 1d | 2026-12-09 | 2026-12-09 | B2.1.33 81 26.105 | 60.32d | 0d | Labor [31.18 h]; Foreman [15.59 h]; Operator [31.18 h]; Surveyor [15.59 h]; Surveyor Helper [15.59 h]; Excavator (With Bucket) [16 h]; Water Tanker [16 h]; Dump Truck [16 h]; Plate Compactor [16 h]; (6*50mm+2*32mm) HDPE ducts [48.51] | 21,251.23 | 0.00243727564627162 | Cons. | Z2 | Telecom | Cons | DCT&MNH | allElec | SUB.C | Mngmnt Rd | TEL |
| B2.1.33 81 26.109 |  | HDPE Pipe, Shuttering, Steel Fixing & Conc. Cast | 2d | 2026-12-10 | 2026-12-12 | B2.1.33 81 26.108 | 64.32d | 0d | Labor [62.37 h]; Laboratory Officer [31.18 h]; Carpenter [31.18 h]; Steelfixer [31.18 h]; Mason [31.18 h]; Surveyor [31.18 h]; Surveyor Helper [31.18 h]; (6*50mm+2*32mm) HDPE ducts [145.49] | 63,742.79 | 0.00731057705386804 | Cons. | Z2 | Telecom | Cons | DCT&MNH | allElec | SUB.C | Mngmnt Rd | TEL |
| B2.1.33 81 26.110 |  | Backfilling & Warrning Tape | 2d | 2026-12-13 | 2026-12-14 | B2.1.33 81 26.109, B2.33 71 00.223 | 64.32d | 3d | Labor [62.37 h]; Foreman [31.18 h]; Operator [124.74 h]; Surveyor [31.18 h]; Surveyor Helper [31.18 h]; Loader [32 h]; Water Tanker [32 h]; Dump Truck [32 h]; Plate Compactor [32 h]; Roller Compactor [32 h]; (6*50mm+2*32mm) HDPE ducts [48.51] | 21,251.23 | 0.00243727564627162 | Cons. | Z2 | Telecom | Cons | DCT&MNH | allElec | SUB.C | Mngmnt Rd | TEL |
|  | (6*50mm+4*32mm) | **Size (6*50mm+4*32mm) HDPE ducts** |  | 2026-12-10 | 2026-12-16 |  |  |  |  |  |  |  |  |  |  |  |  |  |  |  |
| B2.1.33 81 26.111 |  | Excavation | 2d | 2026-12-10 | 2026-12-12 | B2.1.33 81 26.108 | 60.32d | 0d | Labor [31.18 h]; Foreman [15.59 h]; Operator [31.18 h]; Surveyor [15.59 h]; Surveyor Helper [15.59 h]; Excavator (With Bucket) [16 h]; Water Tanker [16 h]; Dump Truck [16 h]; Plate Compactor [16 h]; (6*50mm+4*32mm) HDPE ducts [15] | 7,441.11 | 0.00340443051603132 | Cons. | Z2 | Telecom | Cons | DCT&MNH | allElec | SUB.C | Mngmnt Rd | TEL |
| B2.1.33 81 26.112 |  | HDPE Pipe, Shuttering, Steel Fixing & Conc. Cast | 2d | 2026-12-13 | 2026-12-14 | B2.1.33 81 26.111 | 62.32d | 0d | Labor [77.96 h]; Laboratory Officer [38.98 h]; Carpenter [38.98 h]; Steelfixer [38.98 h]; Mason [38.98 h]; Surveyor [38.98 h]; Surveyor Helper [38.98 h]; (6*50mm+4*32mm) HDPE ducts [45] | 22,323.32 | 0.010213291548094 | Cons. | Z2 | Telecom | Cons | DCT&MNH | allElec | SUB.C | Mngmnt Rd | TEL |
| B2.1.33 81 26.113 |  | Backfilling & Warrning Tape | 2d | 2026-12-15 | 2026-12-16 | B2.1.33 81 26.112 | 62.32d | 1d | Labor [77.96 h]; Foreman [38.98 h]; Operator [155.92 h]; Surveyor [38.98 h]; Surveyor Helper [38.98 h]; Loader [40 h]; Water Tanker [40 h]; Dump Truck [40 h]; Plate Compactor [40 h]; Roller Compactor [40 h]; (6*50mm+4*32mm) HDPE ducts [15] | 7,441.11 | 0.00340443051603132 | Cons. | Z2 | Telecom | Cons | DCT&MNH | allElec | SUB.C | Mngmnt Rd | TEL |
|  | (2*32mm) | **Size (2*32mm) HDPE ducts** |  | 2026-12-13 | 2026-12-17 |  |  |  |  |  |  |  |  |  |  |  |  |  |  |  |
| B2.1.33 81 26.114 |  | Excavation | 1d | 2026-12-13 | 2026-12-13 | B2.1.33 81 26.111 | 60.32d | 0d | Labor [31.18 h]; Foreman [15.59 h]; Operator [31.18 h]; Surveyor [15.59 h]; Surveyor Helper [15.59 h]; Excavator (With Bucket) [16 h]; Water Tanker [16 h]; Dump Truck [16 h]; Plate Compactor [16 h]; (2*32mm) HDPE ducts [8.6] | 1,344.05 | 0.000194889802563824 | Cons. | Z2 | Telecom | Cons | DCT&MNH | allElec | SUB.C | Mngmnt Rd | TEL |
| B2.1.33 81 26.115 |  | HDPE Pipe, Shuttering, Steel Fixing & Conc. Cast | 2d | 2026-12-14 | 2026-12-15 | B2.1.33 81 26.114 | 61.32d | 0d | Labor [62.37 h]; Laboratory Officer [31.18 h]; Carpenter [31.18 h]; Steelfixer [31.18 h]; Mason [31.18 h]; Surveyor [31.18 h]; Surveyor Helper [31.18 h]; (2*32mm) HDPE ducts [25.8] | 4,032.14 | 0.000584669407691468 | Cons. | Z2 | Telecom | Cons | DCT&MNH | allElec | SUB.C | Mngmnt Rd | TEL |
| B2.1.33 81 26.116 |  | Backfilling & Warrning Tape | 2d | 2026-12-16 | 2026-12-17 | B2.1.33 81 26.115, B2.1.33 81 26.137, B2.1.33 81 26.140 | 61.32d | 1d | Labor [62.37 h]; Foreman [31.18 h]; Operator [124.74 h]; Surveyor [31.18 h]; Surveyor Helper [31.18 h]; Loader [32 h]; Water Tanker [32 h]; Dump Truck [32 h]; Plate Compactor [32 h]; Roller Compactor [32 h]; (2*32mm) HDPE ducts [8.6] | 1,344.05 | 0.000194889802563824 | Cons. | Z2 | Telecom | Cons | DCT&MNH | allElec | SUB.C | Mngmnt Rd | TEL |
|  | (4*32mm) | **Size (4*32mm) HDPE ducts** |  | 2026-12-14 | 2026-12-20 |  |  |  |  |  |  |  |  |  |  |  |  |  |  |  |
| B2.1.33 81 26.117 |  | Excavation | 2d | 2026-12-14 | 2026-12-15 | B2.1.33 81 26.114 | 60.32d | 0d | Labor [31.18 h]; Foreman [15.59 h]; Operator [31.18 h]; Surveyor [15.59 h]; Surveyor Helper [15.59 h]; Excavator (With Bucket) [16 h]; Water Tanker [16 h]; Dump Truck [16 h]; Plate Compactor [16 h]; (4*32mm) HDPE ducts [5.13] | 1,099.7 | 0.000169743608400202 | Cons. | Z2 | Telecom | Cons | DCT&MNH | allElec | SUB.C | Mngmnt Rd | TEL |
| B2.1.33 81 26.118 |  | HDPE Pipe, Shuttering, Steel Fixing & Conc. Cast | 2d | 2026-12-16 | 2026-12-17 | B2.1.33 81 26.117 | 61.32d | 0d | Labor [46.78 h]; Laboratory Officer [23.39 h]; Carpenter [23.39 h]; Steelfixer [23.39 h]; Mason [23.39 h]; Surveyor [23.39 h]; Surveyor Helper [23.39 h]; (4*32mm) HDPE ducts [15.4] | 3,299.11 | 0.000509230825200604 | Cons. | Z2 | Telecom | Cons | DCT&MNH | allElec | SUB.C | Mngmnt Rd | TEL |
| B2.1.33 81 26.119 |  | Backfilling & Warrning Tape | 2d | 2026-12-19 | 2026-12-20 | B2.1.33 81 26.118, B2.1.33 81 26.146, B2.33 71 00.225, B2.33 71 00.227 | 61.32d | 1d | Labor [62.37 h]; Foreman [31.18 h]; Operator [124.74 h]; Surveyor [31.18 h]; Surveyor Helper [31.18 h]; Loader [32 h]; Water Tanker [32 h]; Dump Truck [32 h]; Plate Compactor [32 h]; Roller Compactor [32 h]; (4*32mm) HDPE ducts [5.13] | 1,099.7 | 0.000169743608400202 | Cons. | Z2 | Telecom | Cons | DCT&MNH | allElec | SUB.C | Mngmnt Rd | TEL |
|  | Manholes | **Manholes** |  | 2026-12-16 | 2026-12-21 |  |  |  |  |  |  |  |  |  |  |  |  |  |  |  |
|  | Manhole Type 1 | **Manhole Type 1** |  | 2026-12-16 | 2026-12-20 |  |  |  |  |  |  |  |  |  |  |  |  |  |  |  |
| B2.31 23 00.617 |  | Excavation | 1d | 2026-12-16 | 2026-12-16 | B2.1.33 81 26.117 | 60.32d | 0d | Labor [31.18 h]; Foreman [15.59 h]; Operator [31.18 h]; Surveyor [15.59 h]; Surveyor Helper [15.59 h]; Excavator (With Bucket) [16 h]; Water Tanker [16 h]; Dump Truck [16 h]; Plate Compactor [16 h]; Manhole Type 1 [1.24] | 8,766.4 | 0.00167335317103356 | Cons. | Z2 | Telecom | Cons | DCT&MNH | allElec | SUB.C | Mngmnt Rd | TEL |
| B2.33 71 00.242 |  | Manhole Installation | 1d | 2026-12-17 | 2026-12-17 | B2.31 23 00.617 | 61.32d | 0d | Labor [31.18 h]; Laboratory Officer [15.59 h]; Carpenter [15.59 h]; Steelfixer [15.59 h]; Mason [15.59 h]; Surveyor [15.59 h]; Surveyor Helper [15.59 h]; Manhole Type 1 [3.72] | 26,299.19 | 0.00502005951310069 | Cons. | Z2 | Telecom | Cons | DCT&MNH | allElec | SUB.C | Mngmnt Rd | TEL |
| B2.33 71 00.243 |  | Backfilling & Warrning Tape | 2d | 2026-12-19 | 2026-12-20 | B2.33 71 00.242, B2.1.33 81 26.110, B2.1.33 81 26.113 | 61.32d | 1d | Labor [77.96 h]; Foreman [38.98 h]; Operator [155.92 h]; Surveyor [38.98 h]; Surveyor Helper [38.98 h]; Loader [40 h]; Water Tanker [40 h]; Dump Truck [40 h]; Plate Compactor [40 h]; Roller Compactor [40 h]; Manhole Type 1 [1.24] | 8,766.4 | 0.00167335317103356 | Cons. | Z2 | Telecom | Cons | DCT&MNH | allElec | SUB.C | Mngmnt Rd | TEL |

| ID | WBS | Activity | Duration | Start | Finish | Predecessors | Complete | Total float | Free float | Resources | Cost | Actual cost | Weight % | DMM2 Weekly Progress | DMM2 Zones | Networks & Stations | DMM2 Phases | Networks Components | All Electrical Scope | Subcontractors works | Dmm2 Roads | Yellow Sheet |
| --- | --- | --- | --- | --- | --- | --- | --- | --- | --- | --- | --- | --- | --- | --- | --- | --- | --- | --- | --- | --- | --- | --- |
|  | Manhole Type 2 | **Manhole Type 2** |  | 2026-12-17 | 2026-12-21 |  |  |  |  |  |  |  |  |  |  |  |  |  |  |  |  |  |
| B2.31 23 00.615 |  | Excavation | 1d | 2026-12-17 | 2026-12-17 | B2.31 23 00.617 |  | 60.32d | 0d | Labor [31.18 h]; Foreman [15.59 h]; Operator [31.18 h]; Surveyor [15.59 h]; Surveyor Helper [15.59 h]; Excavator (With Bucket) [16 h]; Water Tanker [16 h]; Dump Truck [16 h]; Plate Compactor [16 h]; Manhole Type 2 [0.52] | 3,287.69 |  | 0.000634453248743172 | Cons. | Z2 | Telecom | Cons | DCT&MNH | allElec | SUB.C | Mngmnt Rd | TEL |
| B2.33 71 00.238 |  | Manhole Installation | 1d | 2026-12-19 | 2026-12-19 | B2.31 23 00.615 |  | 60.32d | 0d | Labor [31.18 h]; Laboratory Officer [15.59 h]; Carpenter [15.59 h]; Steelfixer [15.59 h]; Mason [15.59 h]; Surveyor [15.59 h]; Surveyor Helper [15.59 h]; Manhole Type 2 [1.56] | 9,863.09 |  | 0.00190336462403523 | Cons. | Z2 | Telecom | Cons | DCT&MNH | allElec | SUB.C | Mngmnt Rd | TEL |
| B2.33 71 00.239 |  | Backfilling & Warrning Tape | 2d | 2026-12-20 | 2026-12-21 | B2.33 71 00.238, B2.1.33 81 26.116, B2.1.33 81 26.107, B2.33 71 00.241 |  | 60.32d | 0d | Labor [77.96 h]; Foreman [38.98 h]; Operator [155.92 h]; Surveyor [38.98 h]; Surveyor Helper [38.98 h]; Loader [40 h]; Water Tanker [40 h]; Dump Truck [40 h]; Plate Compactor [40 h]; Roller Compactor [40 h]; Manhole Type 2 [0.52] | 3,287.69 |  | 0.000634453248743172 | Cons. | Z2 | Telecom | Cons | DCT&MNH | allElec | SUB.C | Mngmnt Rd | TEL |
|  | Crossing Ducts | **Road Crossing Ducts** |  | 2026-12-09 | 2026-12-14 |  |  |  |  |  |  |  |  |  |  |  |  |  |  |  |  |  |
|  | 1 | **Size (6*50mm) HDPE** |  | 2026-12-09 | 2026-12-14 |  |  |  |  |  |  |  |  |  |  |  |  |  |  |  |  |  |
| B2.31 23 00.616 |  | Excavation | 1d | 2026-12-09 | 2026-12-09 | B2.1.33 81 26.105 |  | 64.32d | 0d | Labor [31.18 h]; Foreman [15.59 h]; Operator [31.18 h]; Surveyor [15.59 h]; Surveyor Helper [15.59 h]; Excavator (With Bucket) [16 h]; Water Tanker [16 h]; Dump Truck [16 h]; Plate Compactor [16 h]; Road crossing ducts, (6*50mm) HDPE [7.13] | 2,221.93 |  | 0.000381434848303997 | Cons. | Z2 | Telecom | Cons | DCT&MNH | allElec | SUB.C | Mngmnt Rd | TEL |
| B2.33 71 00.240 |  | Shuttering, Steel Fixing Incl. UPVC Pipe & Conc. Cast | 2d | 2026-12-10 | 2026-12-12 | B2.31 23 00.616 |  | 64.32d | 0d | Labor [93.55 h]; Laboratory Officer [46.78 h]; Carpenter [46.78 h]; Steelfixer [46.78 h]; Mason [46.78 h]; Surveyor [46.78 h]; Surveyor Helper [46.78 h]; Road crossing ducts, (6*50mm) HDPE [21.37] | 6,660.61 |  | 0.00114341541939146 | Cons. | Z2 | Telecom | Cons | DCT&MNH | allElec | SUB.C | Mngmnt Rd | TEL |
| B2.33 71 00.241 |  | Backfilling & Warrning Tape | 2d | 2026-12-13 | 2026-12-14 | B2.33 71 00.240, B2.1.33 81 26.53_R, B2.33 71 00.273 |  | 64.32d | 4d | Labor [77.96 h]; Foreman [38.98 h]; Operator [155.92 h]; Surveyor [38.98 h]; Surveyor Helper [38.98 h]; Loader [40 h]; Water Tanker [40 h]; Dump Truck [40 h]; Plate Compactor [40 h]; Roller Compactor [40 h]; Road crossing ducts, (6*50mm) HDPE [7.13] | 2,221.93 |  | 0.000381434848303997 | Cons. | Z2 | Telecom | Cons | DCT&MNH | allElec | SUB.C | Mngmnt Rd | TEL |
|  | Earth & Road Works | **Earth & Road Works** |  | 2025-11-26 | 2026-12-20 |  |  |  |  |  |  |  |  |  |  |  |  |  |  |  |  |  |
|  | Earth Works | **Earth Works** |  | 2025-11-26 | 2025-12-08 |  |  |  |  |  |  |  |  |  |  |  |  |  |  |  |  |  |
| B1.2.31 23 16.01.6 |  | Roadway Excavation | 8.25d | 2025-11-26 A | 2025-12-06 A | DMM2-Eng-MS-78 | 100% |  |  | Roadway Excavation for cuttings (all types of soil) [23344.1]; Labor [28.35 h]; Foreman [14.17 h]; Operator [28.35 h]; Surveyor [14.17 h]; Surveyor Helper [14.17 h]; Excavator (With Bucket) [16 h]; Water Tanker [16 h]; Dump Truck [16 h] | 348,433.56 | 348,433.56 | 4.25480215884149E-005 | Cons. | Z2 | Roads | Cons |  |  |  | Mngmnt Rd |  |
| B1.2.31 23 23.01.6 |  | Embankment Backfiling | 9d | 2025-11-29 A | 2025-12-08 A | B1.2.31 23 16.01.6 | 100% |  |  | Embankment backfiling [10078.2]; Labor [28.35 h]; Foreman [14.17 h]; Operator [28.35 h]; Surveyor [14.17 h]; Surveyor Helper [14.17 h]; Loader [16 h]; Water Tanker [16 h]; Dump Truck [16 h]; Plate Compactor [16 h]; Roller Compactor [16 h] | 274,309.15 | 274,309.15 | 0.0364059482779886 | Cons. | Z2 | Roads | Cons |  |  |  | Mngmnt Rd |  |
|  | Earth Layers | **Earth Layers** |  | 2026-02-08 | 2026-10-22 |  |  |  |  |  |  |  |  |  |  |  |  |  |  |  |  |  |
| B1.2.32 11 13.01.6 |  | Subgrade (65.00% Completed) | 174d | 2026-02-08 A | 2026-09-15 A | B1.2.31 23 23.01.6 | 100% |  |  | Subgrade [869.63]; Labor [20.27 h]; Foreman [10.14 h]; Operator [20.27 h]; Surveyor [10.14 h]; Surveyor Helper [10.14 h]; Grader [10.4 h]; Loader [10.4 h]; Water Tanker [10.4 h]; Dump Truck [10.4 h]; Plate Compactor [10.4 h]; Roller Compactor [10.4 h] | 25,960.19 | 25,960.19 | 0.0234201720242403 | Cons. | Z2 | Roads | Cons | Roads |  |  | Mngmnt Rd | Sub |
| B1.2.32 11 23.01.6 |  | Aggregate Base Course (14.00% Completed) | 6d | 2026-09-09 A | 2026-09-15 A | B1.2.32 11 13.01.6 FF | 100% |  |  | Aggregate base course [124.87]; Labor [4.37 h]; Foreman [2.18 h]; Operator [4.37 h]; Surveyor [2.18 h]; Surveyor Helper [2.18 h]; Grader [2.24 h]; Loader [2.24 h]; Water Tanker [2.24 h]; Dump Truck [2.24 h]; Plate Compactor [2.24 h]; Roller Compactor [2.24 h] | 10,853.92 | 10,853.92 | 0.0441414867106474 | Cons. | Z2 | Roads | Cons | Roads |  |  | Mngmnt Rd | Agg |
| B1.2.32 11 13.01.6_R |  | Subgrade(Rem) | 2d | 2026-10-21 | 2026-10-22 | B1.2.31 23 23.01.6, B1.2.32 11 13.01.6 |  | 49.32d | 0d | Subgrade [468.26]; Labor [10.91 h]; Foreman [5.46 h]; Operator [10.91 h]; Surveyor [5.46 h]; Surveyor Helper [5.46 h]; Grader [5.6 h]; Loader [5.6 h]; Water Tanker [5.6 h]; Dump Truck [5.6 h]; Plate Compactor [5.6 h]; Roller Compactor [5.6 h] | 13,978.56 |  | 0.0234201720242403 | Cons. | Z2 | Roads | Cons | Roads |  |  | Mngmnt Rd | Sub |
| B1.2.32 11 23.01.6_R |  | Aggregate Base Course(Rem) | 2d | 2026-10-21 | 2026-10-22 | B1.2.32 11 13.01.6_R FF, B1.2.32 11 23.01.6 |  | 49.32d | 0d | Aggregate base course [767.06]; Labor [26.82 h]; Foreman [13.41 h]; Operator [26.82 h]; Surveyor [13.41 h]; Surveyor Helper [13.41 h]; Grader [13.76 h]; Loader [13.76 h]; Water Tanker [13.76 h]; Dump Truck [13.76 h]; Plate Compactor [13.76 h]; Roller Compactor [13.76 h] | 66,674.1 |  | 0.0441414867106474 | Cons. | Z2 | Roads | Cons | Roads |  |  | Mngmnt Rd | Agg |
|  | Interlock | **Interlock** |  | 2026-11-09 | 2026-11-12 |  |  |  |  |  |  |  |  |  |  |  |  |  |  |  |  |  |
| B1.2.32 14 13.13.6 |  | 60mm thick - Interlocking Block Pavers | 3d | 2026-11-09 | 2026-11-12 | B1.2.32 14 13.13.8 SS |  | 18d | 0d | 60mm thick - Interlocking block pavers for sidewalks and medians [318.42]; Labor [46.78 h]; Foreman [23.39 h]; Mason [23.39 h]; Operator [46.78 h]; JCB [24 h] | 21,247.5 |  | 0.0117960535614926 | Cons. | Z2 | Roads | Cons | Roads |  |  | Mngmnt Rd |  |
|  | Curbstone | **Curbstone** |  | 2026-10-29 | 2026-11-19 |  |  |  |  |  |  |  |  |  |  |  |  |  |  |  |  |  |
|  | Pre Install | **Pre-Installation** |  | 2026-10-29 | 2026-11-05 |  |  |  |  |  |  |  |  |  |  |  |  |  |  |  |  |  |
| B2.31 23 00.151 |  | Excavation | 2d | 2026-10-29 | 2026-11-01 | B1.2.32 11 23.01.9 SS |  | 15d | 0d | Curb Stone, Type K1 [550.58]; Dropped Curb, Type K3 [2.34]; Edge Curb, Type K4 [37.74]; Heel Curb, Type K5 [29.86]; Transition Curb [0.27]; Labor [46.78 h]; Foreman [23.39 h]; Operator [46.78 h]; Surveyor [23.39 h]; Surveyor Helper [23.39 h]; JCB [24 h]; Water Tanker [24 h]; Dump Truck [24 h]; Plate Compactor [24 h] | 46,547.46 |  | 0.0272207313456944 | Cons. | Z2 | Roads | Cons | Roads |  |  | Mngmnt Rd |  |
| B1.2.32 14 13.13.26 |  | PCC | 2d | 2026-11-01 | 2026-11-03 | B2.31 23 00.151 |  | 26d | 0d | Curb Stone, Type K1 [550.58]; Dropped Curb, Type K3 [2.34]; Edge Curb, Type K4 [37.79]; Heel Curb, Type K5 [29.88]; Transition Curb [0.27]; Labor [31.18 h]; Mason [15.59 h]; Surveyor [15.59 h]; Surveyor Helper [15.59 h] | 46,552.82 |  | 0.0272236535150368 | Cons. | Z2 | Roads | Cons | Roads |  |  | Mngmnt Rd |  |
| 32 16 13.006 |  | Haunching | 2d | 2026-11-03 | 2026-11-05 | B1.2.32 14 13.13.26 |  | 26d | 0d | Curb Stone, Type K1 [550.58]; Dropped Curb, Type K3 [2.34]; Edge Curb, Type K4 [37.74]; Heel Curb, Type K5 [29.86]; Transition Curb [0.27]; Labor [62.37 h]; Carpenter [31.18 h]; Mason [31.18 h]; Surveyor [31.18 h]; Surveyor Helper [31.18 h] | 46,547.39 |  | 0.027220690735486 | Cons. | Z2 | Roads | Cons | Roads |  |  | Mngmnt Rd |  |

| ID | WBS | Activity | Duration | Start | Finish | Predecessors | Total float | Free float | Resources | Cost | Weight % | DMM2 Weekly Progress | DMM2 Zones | Networks & Stations | DMM2 Phases | Networks Components | Dmm2 Roads | Yellow Sheet |
| --- | --- | --- | --- | --- | --- | --- | --- | --- | --- | --- | --- | --- | --- | --- | --- | --- | --- | --- |
|  | Installation | **Installation** |  | 2026-11-05 | 2026-11-17 |  |  |  |  |  |  |  |  |  |  |  |  |  |
| B1.2.32 16.13.01.6 |  | Curb Stone, Type K1 | 2d | 2026-11-05 | 2026-11-08 | 32 16 13.006 | 26d | 0d | Curb Stone, Type K1 [1651.73]; Labor [93.55 h]; Foreman [46.78 h]; Mason [46.78 h]; Operator [93.55 h]; Surveyor [46.78 h]; Surveyor Helper [46.78 h]; JCB [48 h] | 124,719.2 | 0.0735610997793665 | Cons. | Z2 | Roads | Cons | Roads | Mngmnt Rd |  |
| B1.2.32 16.13.02.5 |  | Dropped Curb, Type K3 | 2d | 2026-11-08 | 2026-11-10 | B1.2.32 16.13.01.6, 32 16 13.006 | 26d | 0d | Dropped Curb, Type K3 [1.52]; Labor [31.18 h]; Foreman [15.59 h]; Mason [15.59 h]; Operator [31.18 h]; Surveyor [15.59 h]; Surveyor Helper [15.59 h]; JCB [16 h] | 122.64 | 7.16737408382225E-005 | Cons. | Z2 | Roads | Cons | Roads | Mngmnt Rd |  |
| B1.2.32 16.13.03.6 |  | Edge Curb, Type K4 | 2d | 2026-11-10 | 2026-11-12 | B1.2.32 16.13.02.5, 32 16 13.006 | 26d | 0d | Edge Curb, Type K4 [113.22]; Labor [31.18 h]; Foreman [15.59 h]; Mason [15.59 h]; Operator [31.18 h]; Surveyor [15.59 h]; Surveyor Helper [15.59 h]; JCB [16 h] | 8,548.64 | 0.00470781855260358 | Cons. | Z2 | Roads | Cons | Roads | Mngmnt Rd |  |
| B1.2.32 16.13.046 |  | Heel Curb, Type K5 | 2d | 2026-11-12 | 2026-11-15 | B1.2.32 16.13.03.6, 32 16 13.006 | 26d | 0d | Heel Curb, Type K5 [89.58]; Labor [31.18 h]; Foreman [15.59 h]; Mason [15.59 h]; Operator [31.18 h]; Surveyor [15.59 h]; Surveyor Helper [15.59 h]; JCB [16 h] | 5,741.59 | 0.00302187075983211 | Cons. | Z2 | Roads | Cons | Roads | Mngmnt Rd |  |
| B1.2.32 16.13.05.5 |  | Transition Curb | 2d | 2026-11-15 | 2026-11-17 | B1.2.32 16.13.046, 32 16 13.006 | 26d | 0d | Transition Curb [3.68]; Labor [31.18 h]; Foreman [15.59 h]; Mason [15.59 h]; Operator [31.18 h]; Surveyor [15.59 h]; Surveyor Helper [15.59 h]; JCB [16 h] | 297.53 | 0.00018074501637049 | Cons. | Z2 | Roads | Cons | Roads | Mngmnt Rd |  |
|  | Finishing | **Finishing** |  | 2026-11-17 | 2026-11-19 |  |  |  |  |  |  |  |  |  |  |  |  |  |
| 32 16 13.06 |  | Finishing, Fareface | 2d | 2026-11-17 | 2026-11-19 | B1.2.32 16.13.01.6, B1.2.32 16.13.02.5, B1.2.32 16.13.03.6, B1.2.32 16.13.046, B1.2.32 16.13.05.5, 32 16 13.04 | 26d | 0d | Curb Stone, Type K1 [367.06]; Dropped Curb, Type K3 [0.41]; Edge Curb, Type K4 [25.16]; Heel Curb, Type K5 [13.63]; Transition Curb [0.32]; Labor [62.37 h]; Mason [31.18 h] | 30,548.6 | 0.0178884975135747 | Cons. | Z2 | Roads | Cons | Roads | Mngmnt Rd |  |
|  | Asphalt Layers | **Asphalt Layers** |  | 2026-10-24 | 2026-12-10 |  |  |  |  |  |  |  |  |  |  |  |  |  |
| B1.2.32 11 26.01.6 |  | Bituminous Base Course including Prime Coat (MC1) and tack coat (RC2) | 2d | 2026-10-24 | 2026-10-25 | B1.2.32 11 23.01.6_R | 49.32d | 0d | Bituminous base course(Grading I - Class A) [611.12]; Labor [31.18 h]; Foreman [15.59 h]; Operator [31.18 h]; Surveyor [15.59 h]; Surveyor Helper [15.59 h]; Dump Truck [16 h]; Roller Compactor [16 h]; MC1/RC2 Sprayer [16 h] | 335,890.21 | 0.185289449449729 | Cons. | Z2 | Roads | Cons | Roads | Mngmnt Rd | BBC |
| B1.2.32 12 16.01.6 |  | Bituminous concrete Wearing Course, including tack coat (RC2) | 5d | 2026-12-05 | 2026-12-10 | B1.2.32 11 26.01.6, B7.32 93 43.04.44.14 | 15d | 0d | Bituminous concrete wearing course, after compaction(Grading I - Class A), including tack coat (RC2) [223.61]; Labor [31.18 h]; Foreman [15.59 h]; Operator [31.18 h]; Surveyor [15.59 h]; Surveyor Helper [15.59 h]; Dump Truck [16 h]; Roller Compactor [16 h]; MC1/RC2 Sprayer [16 h] | 131,934.22 | 0.0727419484778974 | Cons. | Z2 | Roads | Cons | Roads | Mngmnt Rd | BWC |
|  | Pavement Marking | **Pavement Marking** |  | 2026-12-10 | 2026-12-13 |  |  |  |  |  |  |  |  |  |  |  |  |  |
| B1.2.32 17 23.01.6 |  | Retroreflective Thermoplastic White Traffic lines | 2d | 2026-12-10 | 2026-12-13 | B1.2.32 12 16.01.6 | 59d | 0d | Retroreflective Thermoplastic White Traffic lines [75.8]; Labor [46.78 h]; Mason [23.39 h]; Road Marking Machine [24 h] | 2,262.79 | 0.00113761553312234 | Cons. | Z2 | Roads | Cons | Roads | Mngmnt Rd |  |
| B1.2.32 17 23.02.6 |  | Retroreflective Thermoplastic Yellow, Traffic lines | 2d | 2026-12-10 | 2026-12-13 | B1.2.32 12 16.01.6 | 59d | 0d | Retroreflective Thermoplastic Yellow, Traffic lines [36.33]; Labor [31.18 h]; Mason [15.59 h]; Road Marking Machine [16 h] | 1,084.52 | 0.000545243881877882 | Cons. | Z2 | Roads | Cons | Roads | Mngmnt Rd |  |
|  | Traffic Signs | **Traffic Signs** |  | 2026-10-29 | 2026-12-20 |  |  |  |  |  |  |  |  |  |  |  |  |  |
|  | Pre Install | **Pre-Installation** |  | 2026-10-29 | 2026-11-23 |  |  |  |  |  |  |  |  |  |  |  |  |  |
| B2.31 23 00.161 |  | Excavation | 2d | 2026-10-29 | 2026-11-01 | B2.31 23 00.151 SS | 15d | 0d | Traffic signs, ground mounted, 1 Sheet Alumenium, (breakaway) Single post [0.33]; Traffic signs, ground mounted, 2 Sheets Alumenium, (breakaway) Single post [0.05]; Ground mounted, 1 Sheet Alumenium powder coated UV printed, Single post [0.39]; Ground mounted, 1 Sheet Alumenium powder coated UV printed, Double post [0.5]; Labor [31.18 h]; Foreman [15.59 h]; Operator [31.18 h]; Surveyor [15.59 h]; Surveyor Helper [15.59 h]; JCB [16 h]; Water Tanker [16 h]; Dump Truck [16 h]; Plate Compactor [16 h] | 2,439.24 | 0.00122632756353365 | Cons. | Z2 | Roads | Cons | Roads | Mngmnt Rd |  |
| 10 14 53.06 |  | Foundation | 2d | 2026-11-21 | 2026-11-23 | B2.31 23 00.161, B7.32 91 00.02.2, B7.32 91 00.02.12 | 74d | 0d | Traffic signs, ground mounted, 1 Sheet Alumenium, (breakaway) Single post [0.33]; Traffic signs, ground mounted, 2 Sheets Alumenium, (breakaway) Single post [0.05]; Ground mounted, 1 Sheet Alumenium powder coated UV printed, Single post [0.39]; Ground mounted, 1 Sheet Alumenium powder coated UV printed, Double post [0.5]; Labor [31.18 h]; Carpenter [15.59 h]; Steelfixer [15.59 h]; Mason [15.59 h]; Surveyor [15.59 h]; Surveyor Helper [15.59 h] | 2,439.24 | 0.00122632756353365 | Cons. | Z2 | Roads | Cons | Roads | Mngmnt Rd |  |
|  | Installation | **Installation** |  | 2026-11-23 | 2026-12-20 |  |  |  |  |  |  |  |  |  |  |  |  |  |
| B1.2.10 14 53.016 |  | 1 Sheet Alumenium, Single post | 2d | 2026-11-23 | 2026-11-25 | 10 14 53.06 | 74d | 15d | Traffic signs, ground mounted, 1 Sheet Alumenium, (breakaway) Single post [1.69]; Labor [93.55 h]; Foreman [46.78 h]; Operator [93.55 h]; JCB [48 h] | 1,885.94 | 0.000948155668551714 | Cons. | Z2 | Roads | Cons | Roads | Mngmnt Rd |  |
| B1.2.10 14 53.026 |  | 2 Sheet Alumenium, Single post | 2d | 2026-12-13 | 2026-12-15 | B1.2.10 14 53.016, 10 14 53.06, B1.2.32 17 23.01.6, B1.2.32 17 23.02.6 | 59d | 0d | Traffic signs, ground mounted, 2 Sheets Alumenium, (breakaway) Single post [1.22]; Labor [93.55 h]; Foreman [46.78 h]; Operator [93.55 h]; JCB [48 h] | 1,877.03 | 0.000943673860924584 | Cons. | Z2 | Roads | Cons | Roads | Mngmnt Rd |  |
| B1.2.10 14 14.01.6 |  | Ground mounted, 1 Sheet Alumenium, Single post | 2d | 2026-12-15 | 2026-12-17 | B1.2.10 14 53.026, 10 14 53.06, B1.2.10 14 14.01.13 | 59d | 0d | Ground mounted, 1 Sheet Alumenium powder coated UV printed, Single post [0.79]; Labor [93.55 h]; Foreman [46.78 h]; Operator [93.55 h]; JCB [48 h] | 881.59 | 0.000443221491480094 | Cons. | Z2 | Roads | Cons | Roads | Mngmnt Rd |  |
| B1.2.10 14 14.026 |  | Ground mounted, 1 Sheet Alumenium, Double post | 2d | 2026-12-17 | 2026-12-20 | B1.2.10 14 14.01.6, 10 14 53.06 | 59d | 0d | Ground mounted, 1 Sheet Alumenium powder coated UV printed, Double post [1]; Labor [93.55 h]; Foreman [46.78 h]; Operator [93.55 h]; JCB [48 h] | 3,117.79 | 0.00156746676606269 | Cons. | Z2 | Roads | Cons | Roads | Mngmnt Rd |  |
|  | Landscape | **Landscape** |  | 2026-11-01 | 2026-12-09 |  |  |  |  |  |  |  |  |  |  |  |  |  |
|  | Large Shrubs | **Large Shrubs** |  | 2026-11-28 | 2026-12-09 |  |  |  |  |  |  |  |  |  |  |  |  |  |
| B7.32 93 33.01 |  | Dodonaea viscosa | 5d | 2026-11-28 | 2026-12-03 | B7.32 91 00.01.2, B7.32 91 00.1, DMM2-Proc-Delv-7543, DMM2-Proc-Delv-7332 | 20d | 0d | Labor [31.18 h]; Operator [31.18 h]; Surveyor [15.59 h]; Surveyor Helper [15.59 h]; JCB [16 h]; Water Tanker [16 h]; Landscape Specialist [15.59 h]; Dodonaea viscosa [6789.02] | 1,967,049.9 | 0.000145667051812188 | Cons. | Z2 | Landscp | Cons | Lndscp | Mngmnt Rd | Lndscp |
| B7.32 93 33.02 |  | Leucophyllun Frutescens | 5d | 2026-12-03 | 2026-12-09 | B7.32 91 00.01.2, B7.32 93 33.01, B7.32 91 00.1, DMM2-Proc-Delv-7543, B7.32 91 00.01.12 | 20d | 0d | Labor [31.18 h]; Operator [31.18 h]; Surveyor [15.59 h]; Surveyor Helper [15.59 h]; JCB [16 h]; Water Tanker [16 h]; Landscape Specialist [15.59 h]; Leucophyllun Frutescens [1035] | 299,881.67 | 0.000145667051812188 | Cons. | Z2 | Landscp | Cons | Lndscp | Mngmnt Rd | Lndscp |

| ID | WBS | Activity | Duration | Start | Finish | Predecessors | Complete | Remaining | Planned start | Planned finish | Total float | Free float | Resources | Cost | Actual cost | Weight % | DMM2 Weekly Progress | DMM2 Zones | Networks & Stations | DMM2 Phases | Networks Components | Dmm2 Roads | Yellow Sheet | UNASCO | Subcontractors works |
| --- | --- | --- | --- | --- | --- | --- | --- | --- | --- | --- | --- | --- | --- | --- | --- | --- | --- | --- | --- | --- | --- | --- | --- | --- | --- |
|  | Fences | **Fences** |  | 2026-11-01 | 2026-12-05 |  |  |  |  |  |  |  |  |  |  |  |  |  |  |  |  |  |  |  |  |
|  | (ZATCA HCIS) | **Steel fence (ZATCA HCIS)** |  | 2026-11-01 | 2026-12-05 |  |  |  |  |  |  |  |  |  |  |  |  |  |  |  |  |  |  |  |  |
| B7.32 93 43.04.44.10 |  | Earthwork | 5d | 2026-11-01 | 2026-11-07 | B2.31 23 00.161 |  |  |  |  | 15d | 0d | Labor [31.18 h]; Foreman [15.59 h]; Operator [31.18 h]; Surveyor [15.59 h]; Surveyor Helper [15.59 h]; Excavator (With Bucket) [16 h]; Water Tanker [16 h]; Dump Truck [16 h]; Plate Compactor [16 h]; Steel fence (ZATCA HCIS) [116.81] | 25,743.45 |  | 0.0145109845928078 | Cons. | Z2 | Landscp | Cons | Fncs&Gt | Mngmnt Rd | ZTK.Fns |  |  |
| B7.32 93 43.04.44.12 |  | Foundation | 6d | 2026-11-21 | 2026-11-28 | B7.32 93 43.04.44.10, B7.32 91 00.02.2, B7.32 91 00.02.12 |  |  |  |  | 15d | 0d | Labor [46.78 h]; Laboratory Officer [23.39 h]; Carpenter [23.39 h]; Steelfixer [23.39 h]; Mason [23.39 h]; Surveyor [23.39 h]; Surveyor Helper [23.39 h]; Steel fence (ZATCA HCIS) [116.81] | 25,743.45 |  | 0.0145109845928078 | Cons. | Z2 | Landscp | Cons | Fncs&Gt | Mngmnt Rd | ZTK.Fns |  |  |
| B7.32 93 43.04.44.14 |  | Fence Installation | 6d | 2026-11-28 | 2026-12-05 | B7.32 93 43.04.44.12 |  |  |  |  | 15d | 0d | Labor [62.37 h]; Foreman [31.18 h]; Welder [31.18 h]; Mason [31.18 h]; Operator [62.37 h]; Boom Truck [32 h]; Welding Machine [32 h]; Steel fence (ZATCA HCIS) [545.13] | 120,135.44 |  | 0.0677175587789433 | Cons. | Z2 | Landscp | Cons | Fncs&Gt | Mngmnt Rd | ZTK.Fns |  |  |
|  | Miscellaneous | **Miscellaneous** |  | 2026-11-07 | 2026-12-03 |  |  |  |  |  |  |  |  |  |  |  |  |  |  |  |  |  |  |  |  |
| B7.32 91 00.02.2 |  | Grey gravel bed - 30-50 mm diameter (G1) | 6d | 2026-11-07 | 2026-11-14 | B7.32 93 43.04.44.10 |  |  |  |  | 15d | 0d | Labor [93.55 h]; Operator [93.55 h]; Surveyor [46.78 h]; Surveyor Helper [46.78 h]; JCB [48 h]; Water Tanker [48 h]; Landscape Specialist [46.78 h]; 30-50 mm Dia. (G1) [4907.63] | 142,193.81 |  | 0.078660207978582 | Cons. | Z2 | Landscp | Cons | Lndscp | Mngmnt Rd | Lndscp |  |  |
| B7.32 91 00.1 |  | Plastic edge | 5d | 2026-11-07 | 2026-11-12 | B7.32 93 43.04.44.10 |  |  |  |  | 33d | 13d | Labor [62.37 h]; Operator [62.37 h]; Surveyor [31.18 h]; Surveyor Helper [31.18 h]; JCB [32 h]; Water Tanker [32 h]; Landscape Specialist [31.18 h]; Plastic edge [1600] | 46,358.52 |  | 0.0116533641449751 | Cons. | Z2 | Landscp | Cons | Lndscp | Mngmnt Rd | Lndscp |  |  |
| B7.32 91 00.02.12 |  | Grey gravel bed - 12-25 mm diameter (G2) | 6d | 2026-11-14 | 2026-11-21 | B7.32 91 00.02.2, B7.32 93 43.04.44.10 |  |  |  |  | 15d | 0d | Labor [124.74 h]; Operator [124.74 h]; Surveyor [62.37 h]; Surveyor Helper [62.37 h]; JCB [64 h]; Water Tanker [64 h]; Landscape Specialist [62.37 h]; 12-25 mm Dia. (G2) [5728.46] | 231,361.19 |  | 0.127922156409613 | Cons. | Z2 | Landscp | Cons | Lndscp | Mngmnt Rd | Lndscp |  |  |
| B7.32 91 00.01.2 |  | 75mm thickness for shrubs and grasses | 6d | 2026-11-21 | 2026-11-28 | B7.32 91 00.02.12 |  |  |  |  | 20d | 0d | Labor [109.15 h]; Operator [109.15 h]; Surveyor [54.57 h]; Surveyor Helper [54.57 h]; JCB [56 h]; Water Tanker [56 h]; Landscape Specialist [54.57 h]; 75mm thickness for shrubs and grasses [563.5] | 36,114.81 |  | 0.0164328663243875 | Cons. | Z2 | Landscp | Cons | Lndscp | Mngmnt Rd | Lndscp |  |  |
| B7.32 91 00.01.12 |  | 75mm thickness for trees | 5d | 2026-11-28 | 2026-12-03 | B7.32 91 00.01.2 |  |  |  |  | 20d | 0d | Labor [31.18 h]; Operator [31.18 h]; Surveyor [15.59 h]; Surveyor Helper [15.59 h]; JCB [16 h]; Water Tanker [16 h]; Landscape Specialist [15.59 h]; 75mm thickness for trees [43] | 2,755.88 |  | 0.00138551618029149 | Cons. | Z2 | Landscp | Cons | Lndscp | Mngmnt Rd | Lndscp |  |  |
|  | Commercial Rd 01 | **Commercial Road 01** |  | 2025-12-07 | 2026-12-30 |  |  |  |  |  |  |  |  |  |  |  |  |  |  |  |  |  |  |  |  |
|  | Wet Networks | **Wet Networks** |  | 2026-02-23 | 2026-12-02 |  |  |  |  |  |  |  |  |  |  |  |  |  |  |  |  |  |  |  |  |
|  | Stormwater Network | **Stormwater Network** |  | 2026-02-23 | 2026-11-01 |  |  |  |  |  |  |  |  |  |  |  |  |  |  |  |  |  |  |  |  |
|  | GRP | **GRP** |  | 2026-02-23 | 2026-11-01 |  |  |  |  |  |  |  |  |  |  |  |  |  |  |  |  |  |  |  |  |
|  | ?400 | **?400** |  | 2026-04-04 | 2026-11-01 |  |  |  |  |  |  |  |  |  |  |  |  |  |  |  |  |  |  |  |  |
|  | 3 | **Depth From 0.0m to 1.5m** |  | 2026-04-08 | 2026-10-24 |  |  |  |  |  |  |  |  |  |  |  |  |  |  |  |  |  |  |  |  |
| B6.33 42 11.011 |  | Excavation | 27.12d | 2026-04-08 A | 2026-05-10 A | B6.33 05 13.115, B1.1.31 23 23.42 | 100% |  |  |  |  |  | Labor [28.35 h]; Foreman [14.17 h]; Operator [28.35 h]; Surveyor [14.17 h]; Surveyor Helper [14.17 h]; Excavator (With Bucket) [16 h]; Water Tanker [16 h]; Dump Truck [16 h]; Plate Compactor [16 h]; Depth less than 1.5 [265.58] | 91,637.55 | 91,637.55 | 0.000131840395986488 | Cons. | Z2 | Storm | Cons | GRPs | Commrce | Strm | CS.UNSC | SUB.C |
| B6.33 42 11.012 |  | Sand Bedding | 24.12d | 2026-04-15 A | 2026-05-13 A | B6.33 42 11.011 | 100% |  |  |  |  |  | Labor [28.35 h]; Foreman [14.17 h]; Operator [56.7 h]; Surveyor [14.17 h]; Surveyor Helper [14.17 h]; Loader [16 h]; Water Tanker [16 h]; Dump Truck [16 h]; Plate Compactor [16 h]; Depth less than 1.5 [67.39] | 23,251.26 | 23,251.26 | 3.3451955044211E-005 | Cons. | Z2 | Storm | Cons | GRPs | Commrce | Strm | CS.UNSC | SUB.C |
| B6.33 42 11.013 |  | Pipe Laying (71.16% Completed) | 126d | 2026-04-18 A | 2026-09-15 A | B6.33 42 11.012 | 100% |  |  |  |  |  | Labor [22.19 h]; Foreman [11.1 h]; Plumber Helper [11.1 h]; Plumber [11.1 h]; Operator [11.1 h]; Surveyor [11.1 h]; Surveyor Helper [11.1 h]; Mobile Crane [11.39 h]; Depth less than 1.5 [424.5] | 146,475 | 146,475 | 0.000296148949193527 | Cons. | Z2 | Storm | Cons | GRPs | Commrce | Strm | CS.UNSC | SUB.C |
| B6.33 42 11.014 |  | Embedment & Test (71.16% Completed) | 124d | 2026-04-20 A | 2026-09-15 A | B6.33 42 11.013 FF | 100% |  |  |  |  |  | Labor [33.29 h]; Foreman [16.64 h]; Plumber Helper [16.64 h]; Plumber [16.64 h]; Operator [33.29 h]; Surveyor [16.64 h]; Surveyor Helper [16.64 h]; Loader [17.08 h]; Water Tanker [17.08 h]; Dump Truck [17.08 h]; Plate Compactor [17.08 h]; Roller Compactor [17.08 h]; Depth less than 1.5 [188.98] | 65,208.14 | 65,208.14 | 0.000131840395986488 | Cons. | Z2 | Storm | Cons | GRPs | Commrce | Strm | CS.UNSC | SUB.C |
| B6.33 42 11.015 |  | Backfilling & Warrning Tape (71.16% Completed) | 122d | 2026-04-22 A | 2026-09-15 A | B6.33 42 11.014 FF, B6.33 42 11.01-134 SS, B6.33 42 11.31-1 9 SS | 100% |  |  |  |  |  | Labor [33.29 h]; Foreman [16.64 h]; Operator [66.57 h]; Surveyor [16.64 h]; Surveyor Helper [16.64 h]; Loader [17.08 h]; Water Tanker [17.08 h]; Dump Truck [17.08 h]; Plate Compactor [17.08 h]; Roller Compactor [17.08 h]; Depth less than 1.5 [94.49] | 32,604.07 | 32,604.07 | 6.59201979932437E-005 | Cons. | Z2 | Storm | Cons | GRPs | Commrce | Strm | CS.UNSC | SUB.C |
| B6.33 42 11.013_R |  | Pipe Laying(Rem) | 2.28d | 2026-09-26 A | 2026-10-15 A | B6.33 42 11.012, B6.33 42 11.013 | 100% |  | 2026-09-16 | 2026-09-19 |  |  | Labor [8.99 h]; Foreman [4.5 h]; Plumber Helper [4.5 h]; Plumber [4.5 h]; Operator [4.5 h]; Surveyor [4.5 h]; Surveyor Helper [4.5 h]; Mobile Crane [4.61 h]; Depth less than 1.5 [172.05] | 59,367.57 | 59,367.57 | 0.000296148949193527 | Cons. | Z2 | Storm | Cons | GRPs | Commrce | Strm | CS.UNSC | SUB.C |
| B6.33 42 11.014_R |  | Embedment & Test(Rem) | 2.56d | 2026-09-26 A | 2026-10-22 | B6.33 42 11.013_R FF, B6.33 42 11.014 | 51% | 1.25d | 2026-09-16 | 2026-09-19 | 105.23d | 1.05d | Labor [13.49 h]; Foreman [6.75 h]; Plumber Helper [6.75 h]; Plumber [6.75 h]; Operator [13.49 h]; Surveyor [6.75 h]; Surveyor Helper [6.75 h]; Loader [6.92 h]; Water Tanker [6.92 h]; Dump Truck [6.92 h]; Plate Compactor [6.92 h]; Roller Compactor [6.92 h]; Depth less than 1.5 [76.6] | 26,429.41 | 13,479 | 0.000131840395986488 | Cons. | Z2 | Storm | Cons | GRPs | Commrce | Strm | CS.UNSC | SUB.C |
| B6.33 42 11.015_R |  | Backfilling & Warrning Tape(Rem) | 2.56d | 2026-10-18 A | 2026-10-24 | B6.33 42 11.014_R FF, B6.33 42 11.01-134_R SS, B6.33 42 11.31-1 9_R SS, B6.33 42 11.015 | 10% | 2.3d | 2026-10-18 | 2026-10-20 | 104.18d | 0d | Labor [13.49 h]; Foreman [6.75 h]; Operator [26.98 h]; Surveyor [6.75 h]; Surveyor Helper [6.75 h]; Loader [6.92 h]; Water Tanker [6.92 h]; Dump Truck [6.92 h]; Plate Compactor [6.92 h]; Roller Compactor [6.92 h]; Depth less than 1.5 [38.3] | 13,214.71 | 1,321.47 | 6.59201979932437E-005 | Cons. | Z2 | Storm | Cons | GRPs | Commrce | Strm | CS.UNSC | SUB.C |

| ID | WBS | Activity | Duration | Start | Finish | Predecessors | Complete | Remaining | Planned start | Planned finish | Total float | Free float | Resources | Cost | Actual cost | Weight % | DMM2 Weekly Progress | DMM2 Zones | Networks & Stations | DMM2 Phases | UNASCO | Networks Components | Subcontractors works | Dmm2 Roads | Yellow Sheet |
| --- | --- | --- | --- | --- | --- | --- | --- | --- | --- | --- | --- | --- | --- | --- | --- | --- | --- | --- | --- | --- | --- | --- | --- | --- | --- |
|  | 1 | **Depth From 1.5m to 2.5m** |  | 2026-04-04 | 2026-11-01 |  |  |  |  |  |  |  |  |  |  |  |  |  |  |  |  |  |  |  |  |
| B6.33 42 11.02.1 |  | Excavation | 30.26d | 2026-04-04 A | 2026-05-09 A | B6.33 42 11.011 | 100% |  |  |  |  |  | Labor [28.35 h]; Foreman [14.17 h]; Operator [28.35 h]; Surveyor [14.17 h]; Surveyor Helper [14.17 h]; Excavator (With Bucket) [16 h]; Water Tanker [16 h]; Dump Truck [16 h]; Plate Compactor [16 h]; Depth: 1.51m - 2.5m [3.99] | 1,531.45 | 1,531.45 | 0.00310601117599926 | Cons. | Z2 | Storm | Cons | CS.UNSC | GRPs | SUB.C | Commrce | Strm |
| B6.33 42 11.02.2 |  | Sand Bedding | 26.26d | 2026-04-11 A | 2026-05-11 A | B6.33 42 11.02.1 | 100% |  |  |  |  |  | Labor [28.35 h]; Foreman [14.17 h]; Operator [56.7 h]; Surveyor [14.17 h]; Surveyor Helper [14.17 h]; Loader [16 h]; Water Tanker [16 h]; Dump Truck [16 h]; Plate Compactor [16 h]; Depth: 1.51m - 2.5m [1] | 383 | 383 | 0.000776776306783888 | Cons. | Z2 | Storm | Cons | CS.UNSC | GRPs | SUB.C | Commrce | Strm |
| B6.33 42 11.02.3 |  | Pipe Laying | 22.26d | 2026-04-18 A | 2026-05-13 A | B6.33 42 11.02.2 | 100% |  |  |  |  |  | Labor [28.35 h]; Foreman [14.17 h]; Plumber Helper [14.17 h]; Plumber [14.17 h]; Operator [14.17 h]; Surveyor [14.17 h]; Surveyor Helper [14.17 h]; Mobile Crane [16 h]; Depth: 1.51m - 2.5m [8.98] | 3,445.9 | 3,445.9 | 0.00698879865878235 | Cons. | Z2 | Storm | Cons | CS.UNSC | GRPs | SUB.C | Commrce | Strm |
| B6.33 42 11.02.4 |  | Embedment & Test (69.15% Completed) | 123d | 2026-04-21 A | 2026-09-15 A | B6.33 42 11.02.3 | 100% |  |  |  |  |  | Labor [43.13 h]; Foreman [21.57 h]; Plumber Helper [21.57 h]; Plumber [21.57 h]; Operator [43.13 h]; Surveyor [21.57 h]; Surveyor Helper [21.57 h]; Loader [22.13 h]; Water Tanker [22.13 h]; Dump Truck [22.13 h]; Plate Compactor [22.13 h]; Roller Compactor [22.13 h]; Depth: 1.51m - 2.5m [2.76] | 1,059.04 | 1,059.04 | 0.00310601117599926 | Cons. | Z2 | Storm | Cons | CS.UNSC | GRPs | SUB.C | Commrce | Strm |
| B6.33 42 11.02.5 |  | Backfilling & Warrning Tape (69.15% Completed) | 122d | 2026-04-22 A | 2026-09-15 A | B6.33 42 11.01-1.42, B6.33 42 11.02.4 FF | 100% |  |  |  |  |  | Labor [53.91 h]; Foreman [26.96 h]; Operator [107.83 h]; Surveyor [26.96 h]; Surveyor Helper [26.96 h]; Loader [27.66 h]; Water Tanker [27.66 h]; Dump Truck [27.66 h]; Plate Compactor [27.66 h]; Roller Compactor [27.66 h]; Depth: 1.51m - 2.5m [1.38] | 529.71 | 529.71 | 0.00155355261356778 | Cons. | Z2 | Storm | Cons | CS.UNSC | GRPs | SUB.C | Commrce | Strm |
| B6.33 42 11.02.4_R |  | Embedment & Test(Rem) | 2.84d | 2026-10-24 | 2026-10-27 | B6.33 42 11.02.3, B6.33 42 11.02.4, B6.33 42 11.015_R |  |  |  |  | 104.18d | 0d | Labor [19.24 h]; Foreman [9.62 h]; Plumber Helper [9.62 h]; Plumber [9.62 h]; Operator [19.24 h]; Surveyor [9.62 h]; Surveyor Helper [9.62 h]; Loader [9.87 h]; Water Tanker [9.87 h]; Dump Truck [9.87 h]; Plate Compactor [9.87 h]; Roller Compactor [9.87 h]; Depth: 1.51m - 2.5m [1.23] | 472.41 |  | 0.00310601117599926 | Cons. | Z2 | Storm | Cons | CS.UNSC | GRPs | SUB.C | Commrce | Strm |
| B6.33 42 11.02.5_R |  | Backfilling & Warrning Tape(Rem) | 4d | 2026-10-27 | 2026-11-01 | B6.33 42 11.01-1.42, B6.33 42 11.02.4_R FF, B6.33 42 11.02.5, B6.33 42 11.02.4_R, B6.33 42 11.13.105_R, B6.33 05 39.01.3167_R |  |  |  |  | 104.18d |  | Labor [24.05 h]; Foreman [12.02 h]; Operator [48.1 h]; Surveyor [12.02 h]; Surveyor Helper [12.02 h]; Loader [12.34 h]; Water Tanker [12.34 h]; Dump Truck [12.34 h]; Plate Compactor [12.34 h]; Roller Compactor [12.34 h]; Depth: 1.51m - 2.5m [0.62] | 236.29 |  | 0.00155355261356778 | Cons. | Z2 | Storm | Cons | CS.UNSC | GRPs | SUB.C | Commrce | Strm |
|  | ?500 | **?500** |  | 2026-04-06 | 2026-10-18 |  |  |  |  |  |  |  |  |  |  |  |  |  |  |  |  |  |  |  |  |
|  | 3 | **Depth From 0.0m to 1.5m** |  | 2026-04-06 | 2026-10-18 |  |  |  |  |  |  |  |  |  |  |  |  |  |  |  |  |  |  |  |  |
| B6.33 42 11.361020 |  | Excavation | 24.26d | 2026-04-06 A | 2026-05-04 A | B6.33 42 11.02.1 | 100% |  |  |  |  |  | Labor [28.35 h]; Foreman [14.17 h]; Operator [28.35 h]; Surveyor [14.17 h]; Surveyor Helper [14.17 h]; Excavator (With Bucket) [16 h]; Water Tanker [16 h]; Dump Truck [16 h]; Plate Compactor [16 h]; less than 1.5 [226.31] | 112,465.25 | 112,465.25 | 0.000188462958569048 | Cons. | Z2 | Storm | Cons | CS.UNSC | GRPs | SUB.C | Commrce | Strm |
| B6.33 42 11.361030 |  | Sand Bedding | 20.26d | 2026-04-13 A | 2026-05-06 A | B6.33 42 11.361020 | 100% |  |  |  |  |  | Labor [28.35 h]; Foreman [14.17 h]; Operator [56.7 h]; Surveyor [14.17 h]; Surveyor Helper [14.17 h]; Loader [16 h]; Water Tanker [16 h]; Dump Truck [16 h]; Plate Compactor [16 h]; less than 1.5 [57.85] | 28,750.44 | 28,750.44 | 4.81783772184341E-005 | Cons. | Z2 | Storm | Cons | CS.UNSC | GRPs | SUB.C | Commrce | Strm |
| B6.33 42 11.361040 |  | Pipe Laying | 17.26d | 2026-04-20 A | 2026-05-10 A | B6.33 42 11.361030 | 100% |  |  |  |  |  | Labor [28.35 h]; Foreman [14.17 h]; Plumber Helper [14.17 h]; Plumber [14.17 h]; Operator [14.17 h]; Surveyor [14.17 h]; Surveyor Helper [14.17 h]; Mobile Crane [16 h]; less than 1.5 [513.88] | 255,372.22 | 255,372.22 | 0.000427938447277086 | Cons. | Z2 | Storm | Cons | CS.UNSC | GRPs | SUB.C | Commrce | Strm |
| B6.33 42 11.361050 |  | Embedment & Test | 16.26d | 2026-04-22 A | 2026-05-11 A | B6.33 42 11.361040 | 100% |  |  |  |  |  | Labor [56.7 h]; Foreman [28.35 h]; Plumber Helper [28.35 h]; Plumber [28.35 h]; Operator [56.7 h]; Surveyor [28.35 h]; Surveyor Helper [28.35 h]; Loader [32 h]; Water Tanker [32 h]; Dump Truck [32 h]; Plate Compactor [32 h]; Roller Compactor [32 h]; less than 1.5 [228.01] | 113,310.85 | 113,310.85 | 0.000189879973295131 | Cons. | Z2 | Storm | Cons | CS.UNSC | GRPs | SUB.C | Commrce | Strm |
| B6.33 42 11.361060 |  | Backfilling & Warrning Tape (69.15% Completed) | 118d | 2026-04-27 A | 2026-09-15 A | B6.33 42 11.361050 | 100% |  |  |  |  |  | Labor [53.91 h]; Foreman [26.96 h]; Operator [107.83 h]; Surveyor [26.96 h]; Surveyor Helper [26.96 h]; Loader [27.66 h]; Water Tanker [27.66 h]; Dump Truck [27.66 h]; Plate Compactor [27.66 h]; Roller Compactor [27.66 h]; less than 1.5 [78.84] | 39,178.75 | 39,178.75 | 9.49399866475656E-005 | Cons. | Z2 | Storm | Cons | CS.UNSC | GRPs | SUB.C | Commrce | Strm |
| B6.33 42 11.361060_R |  | Backfilling & Warrning Tape(Rem) | 3.12d | 2026-10-14 A | 2026-10-18 A | B6.33 42 11.361050, B6.33 42 11.361060 | 100% |  |  |  |  |  | Labor [24.05 h]; Foreman [12.02 h]; Operator [48.1 h]; Surveyor [12.02 h]; Surveyor Helper [12.02 h]; Loader [12.34 h]; Water Tanker [12.34 h]; Dump Truck [12.34 h]; Plate Compactor [12.34 h]; Roller Compactor [12.34 h]; less than 1.5 [35.17] | 17,476.68 | 17,476.68 | 9.49399866475656E-005 | Cons. | Z2 | Storm | Cons | CS.UNSC | GRPs | SUB.C | Commrce | Strm |
|  | ?600 | **?600** |  | 2026-04-07 | 2026-10-24 |  |  |  |  |  |  |  |  |  |  |  |  |  |  |  |  |  |  |  |  |
|  | 3 | **Depth From 0.0m to 1.5m** |  | 2026-04-07 | 2026-10-24 |  |  |  |  |  |  |  |  |  |  |  |  |  |  |  |  |  |  |  |  |
| B6.33 42 11.361070 |  | Excavation (70.65% Completed) | 135d | 2026-04-07 A | 2026-09-15 A | B6.33 42 11.361020 | 100% |  |  |  |  |  | Labor [22.03 h]; Foreman [11.02 h]; Operator [22.03 h]; Surveyor [11.02 h]; Surveyor Helper [11.02 h]; Excavator (With Bucket) [11.3 h]; Water Tanker [11.3 h]; Dump Truck [11.3 h]; Plate Compactor [11.3 h]; less than 1.5 [56.03] | 40,188.7 | 40,188.7 | 0.000272039710373951 | Cons. | Z2 | Storm | Cons | CS.UNSC | GRPs | SUB.C | Commrce | Strm |
| B6.33 42 11.361080 |  | Sand Bedding (70.65% Completed) | 129d | 2026-04-14 A | 2026-09-15 A | B6.33 42 11.361070 FF | 100% |  |  |  |  |  | Labor [22.03 h]; Foreman [11.02 h]; Operator [44.06 h]; Surveyor [11.02 h]; Surveyor Helper [11.02 h]; Loader [11.3 h]; Water Tanker [11.3 h]; Dump Truck [11.3 h]; Plate Compactor [11.3 h]; less than 1.5 [14.32] | 10,273.78 | 10,273.78 | 6.95438078883174E-005 | Cons. | Z2 | Storm | Cons | CS.UNSC | GRPs | SUB.C | Commrce | Strm |
| B6.33 42 11.361090 |  | Pipe Laying (70.65% Completed) | 123d | 2026-04-21 A | 2026-09-15 A | B6.33 42 11.361080 FF | 100% |  |  |  |  |  | Labor [22.03 h]; Foreman [11.02 h]; Plumber Helper [11.02 h]; Plumber [11.02 h]; Operator [11.02 h]; Surveyor [11.02 h]; Surveyor Helper [11.02 h]; Mobile Crane [11.3 h]; less than 1.5 [127.22] | 91,255.54 | 91,255.54 | 0.000617714229570928 | Cons. | Z2 | Storm | Cons | CS.UNSC | GRPs | SUB.C | Commrce | Strm |
| B6.33 42 11.361100 |  | Embedment & Test (70.65% Completed) | 122d | 2026-04-22 A | 2026-09-15 A | B6.33 42 11.361090 FF | 100% |  |  |  |  |  | Labor [33.05 h]; Foreman [16.52 h]; Plumber Helper [16.52 h]; Plumber [16.52 h]; Operator [33.05 h]; Surveyor [16.52 h]; Surveyor Helper [16.52 h]; Loader [16.96 h]; Water Tanker [16.96 h]; Dump Truck [16.96 h]; Plate Compactor [16.96 h]; Roller Compactor [16.96 h]; less than 1.5 [56.45] | 40,490.87 | 40,490.87 | 0.000274085121730147 | Cons. | Z2 | Storm | Cons | CS.UNSC | GRPs | SUB.C | Commrce | Strm |
| B6.33 42 11.361110 |  | Backfilling & Warrning Tape (70.65% Completed) | 117d | 2026-04-28 A | 2026-09-15 A | B6.33 42 11.361100 FF | 100% |  |  |  |  |  | Labor [33.05 h]; Foreman [16.52 h]; Operator [66.09 h]; Surveyor [16.52 h]; Surveyor Helper [16.52 h]; Loader [16.96 h]; Water Tanker [16.96 h]; Dump Truck [16.96 h]; Plate Compactor [16.96 h]; Roller Compactor [16.96 h]; less than 1.5 [28.22] | 20,245.44 | 20,245.44 | 0.000137042560865073 | Cons. | Z2 | Storm | Cons | CS.UNSC | GRPs | SUB.C | Commrce | Strm |
| B6.33 42 11.361070_R |  | Excavation(Rem) | 2.28d | 2026-10-14 A | 2026-10-17 A | B6.33 42 11.361020, B6.33 42 11.361070 | 100% |  |  |  |  |  | Labor [9.15 h]; Foreman [4.58 h]; Operator [9.15 h]; Surveyor [4.58 h]; Surveyor Helper [4.58 h]; Excavator (With Bucket) [4.7 h]; Water Tanker [4.7 h]; Dump Truck [4.7 h]; Plate Compactor [4.7 h]; less than 1.5 [23.28] | 16,696.97 | 16,696.97 | 0.000272039710373951 | Cons. | Z2 | Storm | Cons | CS.UNSC | GRPs | SUB.C | Commrce | Strm |
| B6.33 42 11.361080_R |  | Sand Bedding(Rem) | 2.28d | 2026-10-14 A | 2026-10-17 A | B6.33 42 11.361070_R FF, B6.33 42 11.361080 | 100% |  |  |  |  |  | Labor [9.15 h]; Foreman [4.58 h]; Operator [18.31 h]; Surveyor [4.58 h]; Surveyor Helper [4.58 h]; Loader [4.7 h]; Water Tanker [4.7 h]; Dump Truck [4.7 h]; Plate Compactor [4.7 h]; less than 1.5 [5.95] | 4,268.39 | 4,268.39 | 6.95438078883174E-005 | Cons. | Z2 | Storm | Cons | CS.UNSC | GRPs | SUB.C | Commrce | Strm |
| B6.33 42 11.361090_R |  | Pipe Laying(Rem) | 2.28d | 2026-10-14 A | 2026-10-17 A | B6.33 42 11.361080_R FF, B6.33 42 11.361090 | 100% |  |  |  |  |  | Labor [9.15 h]; Foreman [4.58 h]; Plumber Helper [4.58 h]; Plumber [4.58 h]; Operator [4.58 h]; Surveyor [4.58 h]; Surveyor Helper [4.58 h]; Mobile Crane [4.7 h]; less than 1.5 [52.85] | 37,913.41 | 37,913.41 | 0.000617714229570928 | Cons. | Z2 | Storm | Cons | CS.UNSC | GRPs | SUB.C | Commrce | Strm |
| B6.33 42 11.361110_R |  | Backfilling & Warrning Tape(Rem) | 2.56d | 2026-10-14 A | 2026-10-24 | B6.33 42 11.361100_R FF, B6.33 42 11.361110 | 10% | 2.3d | 2026-10-14 | 2026-10-17 | 110.76d |  | Labor [13.73 h]; Foreman [6.86 h]; Operator [27.46 h]; Surveyor [6.86 h]; Surveyor Helper [6.86 h]; Loader [7.04 h]; Water Tanker [7.04 h]; Dump Truck [7.04 h]; Plate Compactor [7.04 h]; Roller Compactor [7.04 h]; less than 1.5 [11.73] | 8,411.25 | 841.13 | 0.000137042560865073 | Cons. | Z2 | Storm | Cons | CS.UNSC | GRPs | SUB.C | Commrce | Strm |
| B6.33 42 11.361100_R |  | Embedment & Test(Rem) | 2.56d | 2026-10-21 | 2026-10-24 | B6.33 42 11.361090_R FF, B6.33 42 11.361100 |  |  |  |  | 110.76d | 0d | Labor [13.73 h]; Foreman [6.86 h]; Plumber Helper [6.86 h]; Plumber [6.86 h]; Operator [13.73 h]; Surveyor [6.86 h]; Surveyor Helper [6.86 h]; Loader [7.04 h]; Water Tanker [7.04 h]; Dump Truck [7.04 h]; Plate Compactor [7.04 h]; Roller Compactor [7.04 h]; less than 1.5 [23.45] | 16,822.51 |  | 0.000274085121730147 | Cons. | Z2 | Storm | Cons | CS.UNSC | GRPs | SUB.C | Commrce | Strm |

| ID | WBS | Activity | Duration | Start | Finish | Predecessors | Complete | Remaining | Planned start | Planned finish | Total float | Free float | Resources | Cost | Actual cost | Weight % | DMM2 Weekly Progress | DMM2 Zones | Networks & Stations | DMM2 Phases | UNASCO | Networks Components | Subcontractors works | Dmm2 Roads | Yellow Sheet |
| --- | --- | --- | --- | --- | --- | --- | --- | --- | --- | --- | --- | --- | --- | --- | --- | --- | --- | --- | --- | --- | --- | --- | --- | --- | --- |
|  | ?700 | **?700** |  | 2026-04-02 | 2026-10-24 |  |  |  |  |  |  |  |  |  |  |  |  |  |  |  |  |  |  |  |  |
|  | 3 | **Depth From 0.0m to 1.5m** |  | 2026-04-02 | 2026-10-24 |  |  |  |  |  |  |  |  |  |  |  |  |  |  |  |  |  |  |  |  |
| B6.33 42 11.361120 |  | Excavation (65.09% Completed) | 139d | 2026-04-02 A | 2026-09-15 A | B6.33 42 11.361070 SS | 100% |  |  |  |  |  | Labor [20.3 h]; Foreman [10.15 h]; Operator [20.3 h]; Surveyor [10.15 h]; Surveyor Helper [10.15 h]; Excavator (With Bucket) [10.41 h]; Water Tanker [10.41 h]; Dump Truck [10.41 h]; Plate Compactor [10.41 h]; less than 1.5 [19.5] | 15,663.14 | 15,663.14 | 0.000304669457743467 | Cons. | Z2 | Storm | Cons | CS.UNSC | GRPs | SUB.C | Commrce | Strm |
| B6.33 42 11.361130 |  | Sand Bedding (65.09% Completed) | 133d | 2026-04-09 A | 2026-09-15 A | B6.33 42 11.361120 FF | 100% |  |  |  |  |  | Labor [20.3 h]; Foreman [10.15 h]; Operator [40.6 h]; Surveyor [10.15 h]; Surveyor Helper [10.15 h]; Loader [10.41 h]; Water Tanker [10.41 h]; Dump Truck [10.41 h]; Plate Compactor [10.41 h]; less than 1.5 [4.98] | 4,004.1 | 4,004.1 | 7.78852256886477E-005 | Cons. | Z2 | Storm | Cons | CS.UNSC | GRPs | SUB.C | Commrce | Strm |
| B6.33 42 11.361140 |  | Pipe Laying (65.09% Completed) | 127d | 2026-04-16 A | 2026-09-15 A | B6.33 42 11.361130 FF | 100% |  |  |  |  |  | Labor [20.3 h]; Foreman [10.15 h]; Plumber Helper [10.15 h]; Plumber [10.15 h]; Operator [10.15 h]; Surveyor [10.15 h]; Surveyor Helper [10.15 h]; Mobile Crane [10.41 h]; less than 1.5 [44.27] | 35,565.94 | 35,565.94 | 0.000691805836379903 | Cons. | Z2 | Storm | Cons | CS.UNSC | GRPs | SUB.C | Commrce | Strm |
| B6.33 42 11.361150 |  | Embedment & Test (65.09% Completed) | 121d | 2026-04-23 A | 2026-09-15 A | B6.33 42 11.361140 FF | 100% |  |  |  |  |  | Labor [30.45 h]; Foreman [15.22 h]; Plumber Helper [15.22 h]; Plumber [15.22 h]; Operator [30.45 h]; Surveyor [15.22 h]; Surveyor Helper [15.22 h]; Loader [15.62 h]; Water Tanker [15.62 h]; Dump Truck [15.62 h]; Plate Compactor [15.62 h]; Roller Compactor [15.62 h]; less than 1.5 [19.64] | 15,780.91 | 15,780.91 | 0.00030696020554605 | Cons. | Z2 | Storm | Cons | CS.UNSC | GRPs | SUB.C | Commrce | Strm |
| B6.33 42 11.361160 |  | Backfilling & Warrning Tape (65.09% Completed) | 115d | 2026-04-30 A | 2026-09-15 A | B6.33 42 11.361150 FF, B6.33 05 39.01.3467 SS | 100% |  |  |  |  |  | Labor [30.45 h]; Foreman [15.22 h]; Operator [60.9 h]; Surveyor [15.22 h]; Surveyor Helper [15.22 h]; Loader [15.62 h]; Water Tanker [15.62 h]; Dump Truck [15.62 h]; Plate Compactor [15.62 h]; Roller Compactor [15.62 h]; less than 1.5 [9.82] | 7,890.46 | 7,890.46 | 0.000153480102773025 | Cons. | Z2 | Storm | Cons | CS.UNSC | GRPs | SUB.C | Commrce | Strm |
| B6.33 42 11.361120_R |  | Excavation(Rem) | 2.28d | 2026-09-22 A | 2026-10-15 A | B6.33 42 11.361070_R SS, B6.33 42 11.361120 | 100% |  | 2026-09-16 | 2026-09-19 |  |  | Labor [10.89 h]; Foreman [5.44 h]; Operator [10.89 h]; Surveyor [5.44 h]; Surveyor Helper [5.44 h]; Excavator (With Bucket) [5.59 h]; Water Tanker [5.59 h]; Dump Truck [5.59 h]; Plate Compactor [5.59 h]; less than 1.5 [10.46] | 8,400.09 | 8,400.09 | 0.000304669457743467 | Cons. | Z2 | Storm | Cons | CS.UNSC | GRPs | SUB.C | Commrce | Strm |
| B6.33 42 11.361130_R |  | Sand Bedding(Rem) | 2.28d | 2026-09-26 A | 2026-10-22 | B6.33 42 11.361120_R FF, B6.33 42 11.361130 | 51% | 1.12d | 2026-09-16 | 2026-09-19 | 112.2d |  | Labor [10.89 h]; Foreman [5.44 h]; Operator [21.77 h]; Surveyor [5.44 h]; Surveyor Helper [5.44 h]; Loader [5.59 h]; Water Tanker [5.59 h]; Dump Truck [5.59 h]; Plate Compactor [5.59 h]; less than 1.5 [2.67] | 2,147.39 | 1,095.17 | 7.78852256886477E-005 | Cons. | Z2 | Storm | Cons | CS.UNSC | GRPs | SUB.C | Commrce | Strm |
| B6.33 42 11.361140_R |  | Pipe Laying(Rem) | 2.28d | 2026-09-27 A | 2026-10-15 A | B6.33 42 11.361130_R FF, B6.33 42 11.361140 | 100% |  | 2026-09-16 | 2026-09-19 |  |  | Labor [10.89 h]; Foreman [5.44 h]; Plumber Helper [5.44 h]; Plumber [5.44 h]; Operator [5.44 h]; Surveyor [5.44 h]; Surveyor Helper [5.44 h]; Mobile Crane [5.59 h]; less than 1.5 [23.74] | 19,073.89 | 19,073.89 | 0.000691805836379903 | Cons. | Z2 | Storm | Cons | CS.UNSC | GRPs | SUB.C | Commrce | Strm |
| B6.33 42 11.361150_R |  | Embedment & Test(Rem) | 2.56d | 2026-10-01 A | 2026-10-22 | B6.33 42 11.361140_R FF, B6.33 42 11.361150 | 51% | 1.25d | 2026-09-16 | 2026-09-19 | 107.25d | 1.05d | Labor [16.33 h]; Foreman [8.16 h]; Plumber Helper [8.16 h]; Plumber [8.16 h]; Operator [16.33 h]; Surveyor [8.16 h]; Surveyor Helper [8.16 h]; Loader [8.38 h]; Water Tanker [8.38 h]; Dump Truck [8.38 h]; Plate Compactor [8.38 h]; Roller Compactor [8.38 h]; less than 1.5 [10.53] | 8,463.25 | 4,316.26 | 0.00030696020554605 | Cons. | Z2 | Storm | Cons | CS.UNSC | GRPs | SUB.C | Commrce | Strm |
| B6.33 42 11.361160_R |  | Backfilling & Warrning Tape(Rem) | 2.56d | 2026-10-14 A | 2026-10-24 | B6.33 42 11.361150_R FF, B6.33 05 39.01.3467_R SS, B6.33 42 11.361160 | 10% | 2.3d | 2026-10-14 | 2026-10-17 | 106.2d | 111.02d | Labor [16.33 h]; Foreman [8.16 h]; Operator [32.66 h]; Surveyor [8.16 h]; Surveyor Helper [8.16 h]; Loader [8.38 h]; Water Tanker [8.38 h]; Dump Truck [8.38 h]; Plate Compactor [8.38 h]; Roller Compactor [8.38 h]; less than 1.5 [5.27] | 4,231.62 | 423.16 | 0.000153480102773025 | Cons. | Z2 | Storm | Cons | CS.UNSC | GRPs | SUB.C | Commrce | Strm |
|  | ?800 | **?800** |  | 2026-04-01 | 2026-10-22 |  |  |  |  |  |  |  |  |  |  |  |  |  |  |  |  |  |  |  |  |
|  | 3 | **Depth From 0.0m to 1.5m** |  | 2026-04-01 | 2026-10-22 |  |  |  |  |  |  |  |  |  |  |  |  |  |  |  |  |  |  |  |  |
| B6.33 42 11.361170 |  | Excavation (65.09% Completed) | 140d | 2026-04-01 A | 2026-09-15 A | B6.33 42 11.361120 SS | 100% |  |  |  |  |  | Labor [20.3 h]; Foreman [10.15 h]; Operator [20.3 h]; Surveyor [10.15 h]; Surveyor Helper [10.15 h]; Excavator (With Bucket) [10.41 h]; Water Tanker [10.41 h]; Dump Truck [10.41 h]; Plate Compactor [10.41 h]; less than 1.5 [15.08] | 13,939.83 | 13,939.83 | 0.000350618088511604 | Cons. | Z2 | Storm | Cons | CS.UNSC | GRPs | SUB.C | Commrce | Strm |
| B6.33 42 11.361180 |  | Sand Bedding (65.09% Completed) | 134d | 2026-04-08 A | 2026-09-15 A | B6.33 42 11.361170 FF | 100% |  |  |  |  |  | Labor [20.3 h]; Foreman [10.15 h]; Operator [40.6 h]; Surveyor [10.15 h]; Surveyor Helper [10.15 h]; Loader [10.41 h]; Water Tanker [10.41 h]; Dump Truck [10.41 h]; Plate Compactor [10.41 h]; less than 1.5 [3.85] | 3,563.56 | 3,563.56 | 8.96314620983174E-005 | Cons. | Z2 | Storm | Cons | CS.UNSC | GRPs | SUB.C | Commrce | Strm |
| B6.33 42 11.361190 |  | Pipe Laying (65.09% Completed) | 128d | 2026-04-15 A | 2026-09-15 A | B6.33 42 11.361180 FF | 100% |  |  |  |  |  | Labor [20.3 h]; Foreman [10.15 h]; Plumber Helper [10.15 h]; Plumber [10.15 h]; Operator [10.15 h]; Surveyor [10.15 h]; Surveyor Helper [10.15 h]; Mobile Crane [10.41 h]; less than 1.5 [34.24] | 31,652.85 | 31,652.85 | 0.000796140321281988 | Cons. | Z2 | Storm | Cons | CS.UNSC | GRPs | SUB.C | Commrce | Strm |
| B6.33 42 11.361200 |  | Embedment & Test (65.09% Completed) | 126d | 2026-04-18 A | 2026-09-15 A | B6.33 42 11.361190 FF | 100% |  |  |  |  |  | Labor [30.45 h]; Foreman [15.22 h]; Plumber Helper [15.22 h]; Plumber [15.22 h]; Operator [30.45 h]; Surveyor [15.22 h]; Surveyor Helper [15.22 h]; Loader [15.62 h]; Water Tanker [15.62 h]; Dump Truck [15.62 h]; Plate Compactor [15.62 h]; Roller Compactor [15.62 h]; less than 1.5 [15.19] | 14,044.64 | 14,044.64 | 0.000353254314741016 | Cons. | Z2 | Storm | Cons | CS.UNSC | GRPs | SUB.C | Commrce | Strm |
| B6.33 42 11.361210 |  | Backfilling & Warrning Tape (65.09% Completed) | 116d | 2026-04-29 A | 2026-09-15 A | B6.33 42 11.01-1.44, B6.33 42 11.361200 FF | 100% |  |  |  |  |  | Labor [30.45 h]; Foreman [15.22 h]; Operator [60.9 h]; Surveyor [15.22 h]; Surveyor Helper [15.22 h]; Loader [15.62 h]; Water Tanker [15.62 h]; Dump Truck [15.62 h]; Plate Compactor [15.62 h]; Roller Compactor [15.62 h]; less than 1.5 [7.6] | 7,022.32 | 7,022.32 | 0.000176627157370508 | Cons. | Z2 | Storm | Cons | CS.UNSC | GRPs | SUB.C | Commrce | Strm |
| B6.33 42 11.361180_R |  | Sand Bedding(Rem) | 2.28d | 2026-09-10 A | 2026-10-22 | B6.33 42 11.361170_R FF, B6.33 42 11.361180 | 51% | 1.12d | 2026-09-16 | 2026-09-19 | 112.2d | 0d | Labor [10.89 h]; Foreman [5.44 h]; Operator [21.77 h]; Surveyor [5.44 h]; Surveyor Helper [5.44 h]; Loader [5.59 h]; Water Tanker [5.59 h]; Dump Truck [5.59 h]; Plate Compactor [5.59 h]; less than 1.5 [2.07] | 1,911.12 | 974.67 | 8.96314620983174E-005 | Cons. | Z2 | Storm | Cons | CS.UNSC | GRPs | SUB.C | Commrce | Strm |
| B6.33 42 11.361190_R |  | Pipe Laying(Rem) | 2.28d | 2026-09-13 A | 2026-10-22 | B6.33 42 11.361180_R FF, B6.33 42 11.361190 | 51% | 1.12d | 2026-09-16 | 2026-09-19 | 112.2d | 0.14d | Labor [10.89 h]; Foreman [5.44 h]; Plumber Helper [5.44 h]; Plumber [5.44 h]; Operator [5.44 h]; Surveyor [5.44 h]; Surveyor Helper [5.44 h]; Mobile Crane [5.59 h]; less than 1.5 [18.36] | 16,975.32 | 8,657.41 | 0.000796140321281988 | Cons. | Z2 | Storm | Cons | CS.UNSC | GRPs | SUB.C | Commrce | Strm |
| B6.33 42 11.361200_R |  | Embedment & Test(Rem) | 2.56d | 2026-09-15 A | 2026-10-22 | B6.33 42 11.361190_R FF, B6.33 42 11.361200 | 51% | 1.25d | 2026-09-16 | 2026-09-19 | 112.07d |  | Labor [16.33 h]; Foreman [8.16 h]; Plumber Helper [8.16 h]; Plumber [8.16 h]; Operator [16.33 h]; Surveyor [8.16 h]; Surveyor Helper [8.16 h]; Loader [8.38 h]; Water Tanker [8.38 h]; Dump Truck [8.38 h]; Plate Compactor [8.38 h]; Roller Compactor [8.38 h]; less than 1.5 [8.15] | 7,532.09 | 3,841.37 | 0.000353254314741016 | Cons. | Z2 | Storm | Cons | CS.UNSC | GRPs | SUB.C | Commrce | Strm |
| B6.33 42 11.361170_R |  | Excavation(Rem) | 2.28d | 2026-09-16 A | 2026-10-15 A | B6.33 42 11.361120_R SS, B6.33 42 11.361170 | 100% |  | 2026-09-16 | 2026-09-19 |  |  | Labor [10.89 h]; Foreman [5.44 h]; Operator [10.89 h]; Surveyor [5.44 h]; Surveyor Helper [5.44 h]; Excavator (With Bucket) [5.59 h]; Water Tanker [5.59 h]; Dump Truck [5.59 h]; Plate Compactor [5.59 h]; less than 1.5 [8.09] | 7,475.88 | 7,475.88 | 0.000350618088511604 | Cons. | Z2 | Storm | Cons | CS.UNSC | GRPs | SUB.C | Commrce | Strm |
| B6.33 42 11.361210_R |  | Backfilling & Warrning Tape(Rem) | 2.56d | 2026-10-17 A | 2026-10-20 A | B6.33 42 11.01-1.44, B6.33 42 11.361200_R FF, B6.33 42 11.361210, B6.33 42 11.361110_R | 100% |  |  |  |  |  | Labor [16.33 h]; Foreman [8.16 h]; Operator [32.66 h]; Surveyor [8.16 h]; Surveyor Helper [8.16 h]; Loader [8.38 h]; Water Tanker [8.38 h]; Dump Truck [8.38 h]; Plate Compactor [8.38 h]; Roller Compactor [8.38 h]; less than 1.5 [4.07] | 3,766.05 | 3,766.05 | 0.000176627157370508 | Cons. | Z2 | Storm | Cons | CS.UNSC | GRPs | SUB.C | Commrce | Strm |

| ID | WBS | Activity | Duration | Start | Finish | Predecessors | Complete | Planned start | Planned finish | Total float | Free float | Resources | Cost | Actual cost | Weight % | DMM2 Weekly Progress | DMM2 Zones | Networks & Stations | DMM2 Phases | UNASCO | Networks Components | Subcontractors works | Dmm2 Roads | Yellow Sheet | Open End |
| --- | --- | --- | --- | --- | --- | --- | --- | --- | --- | --- | --- | --- | --- | --- | --- | --- | --- | --- | --- | --- | --- | --- | --- | --- | --- |
|  | 4 | **Depth From 1.5m to 2.5m** |  | 2026-04-12 | 2026-10-06 |  |  |  |  |  |  |  |  |  |  |  |  |  |  |  |  |  |  |  |  |
| B6.33 42 11.13.1 |  | Excavation (70.34% Completed) | 131d | 2026-04-12 A | 2026-09-15 A | B6.33 42 11.02.1 | 100% |  |  |  |  | Labor [21.94 h]; Foreman [10.97 h]; Operator [21.94 h]; Surveyor [10.97 h]; Surveyor Helper [10.97 h]; Excavator (With Bucket) [11.26 h]; Water Tanker [11.26 h]; Dump Truck [11.26 h]; Plate Compactor [11.26 h]; 1.51m - 2.5m [13.56] | 13,991.67 | 13,991.67 | 0.00556858258862198 | Cons. | Z2 | Storm | Cons | CS.UNSC | GRPs | SUB.C | Commrce | Strm |  |
| B6.33 42 11.13.2 |  | Sand Bedding (70.34% Completed) | 125d | 2026-04-19 A | 2026-09-15 A | B6.33 42 11.13.1 FF | 100% |  |  |  |  | Labor [21.94 h]; Foreman [10.97 h]; Operator [43.87 h]; Surveyor [10.97 h]; Surveyor Helper [10.97 h]; Loader [11.26 h]; Water Tanker [11.26 h]; Dump Truck [11.26 h]; Plate Compactor [11.26 h]; 1.51m - 2.5m [3.39] | 3,496.07 | 3,496.07 | 0.00139141022948663 | Cons. | Z2 | Storm | Cons | CS.UNSC | GRPs | SUB.C | Commrce | Strm |  |
| B6.33 42 11.13.3 |  | Pipe Laying (70.34% Completed) | 122d | 2026-04-22 A | 2026-09-15 A | B6.33 42 11.13.2 FF | 100% |  |  |  |  | Labor [21.94 h]; Foreman [10.97 h]; Plumber Helper [10.97 h]; Plumber [10.97 h]; Operator [10.97 h]; Surveyor [10.97 h]; Surveyor Helper [10.97 h]; Mobile Crane [11.26 h]; 1.51m - 2.5m [30.51] | 31,479.42 | 31,479.42 | 0.0125285754067306 | Cons. | Z2 | Storm | Cons | CS.UNSC | GRPs | SUB.C | Commrce | Strm |  |
| B6.33 42 11.13.4 |  | Embedment & Test (70.34% Completed) | 120d | 2026-04-25 A | 2026-09-15 A | B6.33 42 11.13.3 FF | 100% |  |  |  |  | Labor [43.87 h]; Foreman [21.94 h]; Plumber Helper [21.94 h]; Plumber [21.94 h]; Operator [43.87 h]; Surveyor [21.94 h]; Surveyor Helper [21.94 h]; Loader [22.51 h]; Water Tanker [22.51 h]; Dump Truck [22.51 h]; Plate Compactor [22.51 h]; Roller Compactor [22.51 h]; 1.51m - 2.5m [13.56] | 13,991.67 | 13,991.67 | 0.00556858258862198 | Cons. | Z2 | Storm | Cons | CS.UNSC | GRPs | SUB.C | Commrce | Strm |  |
| B6.33 42 11.13.5 |  | Backfilling & Warrning Tape (70.34% Completed) | 117d | 2026-04-28 A | 2026-09-15 A | B6.33 42 11.13.4 FF | 100% |  |  |  |  | Labor [54.84 h]; Foreman [27.42 h]; Operator [109.68 h]; Surveyor [27.42 h]; Surveyor Helper [27.42 h]; Loader [28.14 h]; Water Tanker [28.14 h]; Dump Truck [28.14 h]; Plate Compactor [28.14 h]; Roller Compactor [28.14 h]; 1.51m - 2.5m [6.78] | 6,992.14 | 6,992.14 | 0.00278282045897326 | Cons. | Z2 | Storm | Cons | CS.UNSC | GRPs | SUB.C | Commrce | Strm |  |
| B6.33 42 11.13.1_R |  | Excavation(Rem) | 2.28d | 2026-09-16 A | 2026-09-19 A | B6.33 42 11.02.1, B6.33 42 11.13.1 | 100% |  |  |  |  | Labor [9.25 h]; Foreman [4.62 h]; Operator [9.25 h]; Surveyor [4.62 h]; Surveyor Helper [4.62 h]; Excavator (With Bucket) [4.74 h]; Water Tanker [4.74 h]; Dump Truck [4.74 h]; Plate Compactor [4.74 h]; 1.51m - 2.5m [5.72] | 5,898.41 | 5,898.41 | 0.00556858258862198 | Cons. | Z2 | Storm | Cons | CS.UNSC | GRPs | SUB.C | Commrce | Strm |  |
| B6.33 42 11.13.2_R |  | Sand Bedding(Rem) | 2.28d | 2026-09-21 A | 2026-09-24 A | B6.33 42 11.13.1_R FF, B6.33 42 11.13.2 | 100% | 2026-09-16 | 2026-09-19 |  |  | Labor [9.25 h]; Foreman [4.62 h]; Operator [18.5 h]; Surveyor [4.62 h]; Surveyor Helper [4.62 h]; Loader [4.74 h]; Water Tanker [4.74 h]; Dump Truck [4.74 h]; Plate Compactor [4.74 h]; 1.51m - 2.5m [1.43] | 1,473.82 | 1,473.82 | 0.00139141022948663 | Cons. | Z2 | Storm | Cons | CS.UNSC | GRPs | SUB.C | Commrce | Strm |  |
| B6.33 42 11.13.4_R |  | Embedment & Test(Rem) | 2.84d | 2026-09-26 A | 2026-10-05 A | B6.33 42 11.13.3_R FF, B6.33 42 11.13.4 | 100% | 2026-09-16 | 2026-09-19 |  |  | Labor [18.5 h]; Foreman [9.25 h]; Plumber Helper [9.25 h]; Plumber [9.25 h]; Operator [18.5 h]; Surveyor [9.25 h]; Surveyor Helper [9.25 h]; Loader [9.49 h]; Water Tanker [9.49 h]; Dump Truck [9.49 h]; Plate Compactor [9.49 h]; Roller Compactor [9.49 h]; 1.51m - 2.5m [5.72] | 5,898.41 | 5,898.41 | 0.00556858258862198 | Cons. | Z2 | Storm | Cons | CS.UNSC | GRPs | SUB.C | Commrce | Strm |  |
| B6.33 42 11.13.5_R |  | Backfilling & Warrning Tape(Rem) | 3.12d | 2026-09-26 A | 2026-10-06 A | B6.33 42 11.13.4_R FF, B6.33 42 11.13.5 | 100% | 2026-09-16 | 2026-09-20 |  |  | Labor [23.12 h]; Foreman [11.56 h]; Operator [46.24 h]; Surveyor [11.56 h]; Surveyor Helper [11.56 h]; Loader [11.86 h]; Water Tanker [11.86 h]; Dump Truck [11.86 h]; Plate Compactor [11.86 h]; Roller Compactor [11.86 h]; 1.51m - 2.5m [2.86] | 2,947.65 | 2,947.65 | 0.00278282045897326 | Cons. | Z2 | Storm | Cons | CS.UNSC | GRPs | SUB.C | Commrce | Strm |  |
| B6.33 42 11.13.3_R |  | Pipe Laying(Rem) | 2.28d | 2026-09-27 A | 2026-10-01 A | B6.33 42 11.13.2_R FF, B6.33 42 11.13.3 | 100% | 2026-09-16 | 2026-09-19 |  |  | Labor [9.25 h]; Foreman [4.62 h]; Plumber Helper [4.62 h]; Plumber [4.62 h]; Operator [4.62 h]; Surveyor [4.62 h]; Surveyor Helper [4.62 h]; Mobile Crane [4.74 h]; 1.51m - 2.5m [12.86] | 13,270.65 | 13,270.65 | 0.0125285754067306 | Cons. | Z2 | Storm | Cons | CS.UNSC | GRPs | SUB.C | Commrce | Strm |  |
|  | ?900 | **?900** |  | 2026-04-01 | 2026-10-25 |  |  |  |  |  |  |  |  |  |  |  |  |  |  |  |  |  |  |  |  |
|  | 3 | **Depth From 0.0m to 1.5m** |  | 2026-04-06 | 2026-10-24 |  |  |  |  |  |  |  |  |  |  |  |  |  |  |  |  |  |  |  |  |
| B6.33 42 11.361320 |  | Excavation (70.34% Completed) | 136d | 2026-04-06 A | 2026-09-15 A | B6.33 42 11.361270 SS | 100% |  |  |  |  | Labor [21.94 h]; Foreman [10.97 h]; Operator [21.94 h]; Surveyor [10.97 h]; Surveyor Helper [10.97 h]; Excavator (With Bucket) [11.26 h]; Water Tanker [11.26 h]; Dump Truck [11.26 h]; Plate Compactor [11.26 h]; less than 1.5 |  |  | 0.000409280274061401 | Cons. | Z2 | Storm | Cons | CS.UNSC | GRPs | SUB.C | Commrce | Strm |  |
| B6.33 42 11.361330 |  | Sand Bedding (70.34% Completed) | 125d | 2026-04-19 A | 2026-09-15 A | B6.33 42 11.361320 FF | 100% |  |  |  |  | Labor [21.94 h]; Foreman [10.97 h]; Operator [43.87 h]; Surveyor [10.97 h]; Surveyor Helper [10.97 h]; Loader [11.26 h]; Water Tanker [11.26 h]; Dump Truck [11.26 h]; Plate Compactor [11.26 h]; less than 1.5 |  |  | 0.000103846967584863 | Cons. | Z2 | Storm | Cons | CS.UNSC | GRPs | SUB.C | Commrce | Strm |  |
| B6.33 42 11.361340 |  | Pipe Laying (70.34% Completed) | 122d | 2026-04-22 A | 2026-09-15 A | B6.33 42 11.361330 FF | 100% |  |  |  |  | Labor [21.94 h]; Foreman [10.97 h]; Plumber Helper [10.97 h]; Plumber [10.97 h]; Operator [10.97 h]; Surveyor [10.97 h]; Surveyor Helper [10.97 h]; Mobile Crane [11.26 h]; less than 1.5 |  |  | 0.00092240778183987 | Cons. | Z2 | Storm | Cons | CS.UNSC | GRPs | SUB.C | Commrce | Strm |  |
| B6.33 42 11.361350 |  | Embedment & Test (70.34% Completed) | 120d | 2026-04-25 A | 2026-09-15 A | B6.33 42 11.361340 FF | 100% |  |  |  |  | Labor [32.91 h]; Foreman [16.45 h]; Plumber Helper [16.45 h]; Plumber [16.45 h]; Operator [32.91 h]; Surveyor [16.45 h]; Surveyor Helper [16.45 h]; Loader [16.88 h]; Water Tanker [16.88 h]; Dump Truck [16.88 h]; Plate Compactor [16.88 h]; Roller Compactor [16.88 h]; less than 1.5 |  |  | 0.000409280274061401 | Cons. | Z2 | Storm | Cons | CS.UNSC | GRPs | SUB.C | Commrce | Strm |  |
| B6.33 42 11.361360 |  | Backfilling & Warrning Tape (70.34% Completed) | 117d | 2026-04-28 A | 2026-09-15 A | B6.33 42 11.361350 FF, B6.33 42 11.361260 SS | 100% |  |  |  |  | Labor [32.91 h]; Foreman [16.45 h]; Operator [65.81 h]; Surveyor [16.45 h]; Surveyor Helper [16.45 h]; Loader [16.88 h]; Water Tanker [16.88 h]; Dump Truck [16.88 h]; Plate Compactor [16.88 h]; Roller Compactor [16.88 h]; less than 1.5 |  |  | 0.000201585806627256 | Cons. | Z2 | Storm | Cons | CS.UNSC | GRPs | SUB.C | Commrce | Strm |  |
| B6.33 42 11.361320_R |  | Excavation(Rem) | 2.28d | 2026-10-21 | 2026-10-24 | B6.33 42 11.361270_R SS, B6.33 42 11.361320 |  |  |  | 106.48d | 0d | Labor [9.25 h]; Foreman [4.62 h]; Operator [9.25 h]; Surveyor [4.62 h]; Surveyor Helper [4.62 h]; Excavator (With Bucket) [4.74 h]; Water Tanker [4.74 h]; Dump Truck [4.74 h]; Plate Compactor [4.74 h]; less than 1.5 |  |  | 0.000409280274061401 | Cons. | Z2 | Storm | Cons | CS.UNSC | GRPs | SUB.C | Commrce | Strm |  |
| B6.33 42 11.361330_R |  | Sand Bedding(Rem) | 2.28d | 2026-10-21 | 2026-10-24 | B6.33 42 11.361320_R FF, B6.33 42 11.361330 |  |  |  | 110.48d | 0d | Labor [9.25 h]; Foreman [4.62 h]; Operator [18.5 h]; Surveyor [4.62 h]; Surveyor Helper [4.62 h]; Loader [4.74 h]; Water Tanker [4.74 h]; Dump Truck [4.74 h]; Plate Compactor [4.74 h]; less than 1.5 |  |  | 0.000103846967584863 | Cons. | Z2 | Storm | Cons | CS.UNSC | GRPs | SUB.C | Commrce | Strm |  |
| B6.33 42 11.361340_R |  | Pipe Laying(Rem) | 2.28d | 2026-10-21 | 2026-10-24 | B6.33 42 11.361330_R FF, B6.33 42 11.361340 |  |  |  | 110.48d | 0.28d | Labor [9.25 h]; Foreman [4.62 h]; Plumber Helper [4.62 h]; Plumber [4.62 h]; Operator [4.62 h]; Surveyor [4.62 h]; Surveyor Helper [4.62 h]; Mobile Crane [4.74 h]; less than 1.5 |  |  | 0.00092240778183987 | Cons. | Z2 | Storm | Cons | CS.UNSC | GRPs | SUB.C | Commrce | Strm |  |
| B6.33 42 11.361350_R |  | Embedment & Test(Rem) | 2.56d | 2026-10-21 | 2026-10-24 | B6.33 42 11.361340_R FF, B6.33 42 11.361350 |  |  |  | 110.2d | 0d | Labor [13.87 h]; Foreman [6.94 h]; Plumber Helper [6.94 h]; Plumber [6.94 h]; Operator [13.87 h]; Surveyor [6.94 h]; Surveyor Helper [6.94 h]; Loader [7.12 h]; Water Tanker [7.12 h]; Dump Truck [7.12 h]; Plate Compactor [7.12 h]; Roller Compactor [7.12 h]; less than 1.5 |  |  | 0.000409280274061401 | Cons. | Z2 | Storm | Cons | CS.UNSC | GRPs | SUB.C | Commrce | Strm |  |
| B6.33 42 11.361360_R |  | Backfilling & Warrning Tape(Rem) | 2.56d | 2026-10-21 | 2026-10-24 | B6.33 42 11.361350_R FF, B6.33 42 11.361260_R SS, B6.33 42 11.361360 |  |  |  | 110.2d | 4.16d | Labor [13.87 h]; Foreman [6.94 h]; Operator [27.74 h]; Surveyor [6.94 h]; Surveyor Helper [6.94 h]; Loader [7.12 h]; Water Tanker [7.12 h]; Dump Truck [7.12 h]; Plate Compactor [7.12 h]; Roller Compactor [7.12 h]; less than 1.5 |  |  | 0.000201585806627256 | Cons. | Z2 | Storm | Cons | CS.UNSC | GRPs | SUB.C | Commrce | Strm |  |
|  | 4 | **Depth From 1.5m to 2.5m** |  | 2026-04-01 | 2026-10-25 |  |  |  |  |  |  |  |  |  |  |  |  |  |  |  |  |  |  |  |  |
| B6.33 42 11.13.15 |  | Excavation | 31.23d | 2026-04-01 A | 2026-05-07 A | B1.2.31 23 23.01.3 | 100% |  |  |  |  | Labor [28.35 h]; Foreman [14.17 h]; Operator [28.35 h]; Surveyor [14.17 h]; Surveyor Helper [14.17 h]; Excavator (With Bucket) [16 h]; Water Tanker [16 h]; Dump Truck [16 h]; Plate Compactor [16 h]; 1.51m - 2.5m [19.2] | 22,386.96 | 22,386.96 | 0.00490517030795533 | Cons. | Z2 | Storm | Cons | CS.UNSC | GRPs | SUB.C | Commrce | Strm | UDF_G3 |
| B6.33 42 11.13.25 |  | Sand Bedding | 27.23d | 2026-04-08 A | 2026-05-10 A | B6.33 42 11.13.15 | 100% |  |  |  |  | Labor [28.35 h]; Foreman [14.17 h]; Operator [56.7 h]; Surveyor [14.17 h]; Surveyor Helper [14.17 h]; Loader [16 h]; Water Tanker [16 h]; Dump Truck [16 h]; Plate Compactor [16 h]; 1.51m - 2.5m [4.81] | 5,604.33 | 5,604.33 | 0.00122795647465096 | Cons. | Z2 | Storm | Cons | CS.UNSC | GRPs | SUB.C | Commrce | Strm |  |
| B6.33 42 11.13.35 |  | Pipe Laying | 22.23d | 2026-04-15 A | 2026-05-11 A | B6.33 42 11.13.25 | 100% |  |  |  |  | Labor [28.35 h]; Foreman [14.17 h]; Plumber Helper [14.17 h]; Plumber [14.17 h]; Operator [14.17 h]; Surveyor [14.17 h]; Surveyor Helper [14.17 h]; Mobile Crane [16 h]; 1.51m - 2.5m [43.21] | 50,378.25 | 50,378.25 | 0.0110382970905616 | Cons. | Z2 | Storm | Cons | CS.UNSC | GRPs | SUB.C | Commrce | Strm |  |
| B6.33 42 11.13.45 |  | Embedment & Test | 25.23d | 2026-04-18 A | 2026-05-17 A | B6.33 42 11.13.35 | 100% |  |  |  |  | Labor [56.7 h]; Foreman [28.35 h]; Plumber Helper [28.35 h]; Plumber [28.35 h]; Operator [56.7 h]; Surveyor [28.35 h]; Surveyor Helper [28.35 h]; Loader [32 h]; Water Tanker [32 h]; Dump Truck [32 h]; Plate Compactor [32 h]; Roller Compactor [32 h]; 1.51m - 2.5m [19.2] | 22,386.96 | 22,386.96 | 0.00490517030795533 | Cons. | Z2 | Storm | Cons | CS.UNSC | GRPs | SUB.C | Commrce | Strm |  |
| B6.33 42 11.13.55 |  | Backfilling & Warrning Tape (70.34% Completed) | 118d | 2026-04-27 A | 2026-09-15 A | B6.33 42 11.13.45, B6.33 42 11.361160 SS, B6.33 42 11.361060 SS | 100% |  |  |  |  | Labor [54.84 h]; Foreman [27.42 h]; Operator [109.68 h]; Surveyor [27.42 h]; Surveyor Helper [27.42 h]; Loader [28.14 h]; Water Tanker [28.14 h]; Dump Truck [28.14 h]; Plate Compactor [28.14 h]; Roller Compactor [28.14 h]; 1.51m - 2.5m [6.74] | 7,863.36 | 7,863.36 | 0.00244925735865342 | Cons. | Z2 | Storm | Cons | CS.UNSC | GRPs | SUB.C | Commrce | Strm |  |
| B6.33 42 11.13.55_R |  | Backfilling & Warrning Tape(Rem) | 3.12d | 2026-10-21 | 2026-10-25 | B6.33 42 11.13.45, B6.33 42 11.361160_R SS, B6.33 42 11.361060_R SS, B6.33 42 11.13.55, B6.33 05 39.01.3417_R |  |  |  | 106.2d | 0d | Labor [23.12 h]; Foreman [11.56 h]; Operator [46.24 h]; Surveyor [11.56 h]; Surveyor Helper [11.56 h]; Loader [11.86 h]; Water Tanker [11.86 h]; Dump Truck [11.86 h]; Plate Compactor [11.86 h]; Roller Compactor [11.86 h]; 1.51m - 2.5m [2.84] | 3,314.93 |  | 0.00244925735865342 | Cons. | Z2 | Storm | Cons | CS.UNSC | GRPs | SUB.C | Commrce | Strm |  |

| ID | WBS | Activity | Duration | Start | Finish | Predecessors | Complete | Total float | Free float | Resources | Weight % | DMM2 Weekly Progress | DMM2 Zones | Networks & Stations | DMM2 Phases | UNASCO | Networks Components | Subcontractors works | Dmm2 Roads | Yellow Sheet |
| --- | --- | --- | --- | --- | --- | --- | --- | --- | --- | --- | --- | --- | --- | --- | --- | --- | --- | --- | --- | --- |
|  | ?1000 | **?1000** |  | 2026-04-07 | 2026-10-24 |  |  |  |  |  |  |  |  |  |  |  |  |  |  |  |
|  | 3 | **Depth From 0.0m to 1.5m** |  | 2026-04-07 | 2026-10-24 |  |  |  |  |  |  |  |  |  |  |  |  |  |  |  |
| B6.33 42 11.361370 |  | Excavation (69.64% Completed) | 135d | 2026-04-07 A | 2026-09-15 A | B6.33 42 11.361320 SS | 100% |  |  | Labor [21.72 h]; Foreman [10.86 h]; Operator [21.72 h]; Surveyor [10.86 h]; Surveyor Helper [10.86 h]; Excavator (With Bucket) [11.14 h]; Water Tanker [11.14 h]; Dump Truck [11.14 h]; Plate Compactor [11.14 h]; less than 1.5 | 0.000369023197924213 | Cons. | Z2 | Storm | Cons | CS.UNSC | GRPs | SUB.C | Commrce | Strm |
| B6.33 42 11.361380 |  | Sand Bedding (69.64% Completed) | 128d | 2026-04-15 A | 2026-09-15 A | B6.33 42 11.361370 FF | 100% |  |  | Labor [21.72 h]; Foreman [10.86 h]; Operator [43.44 h]; Surveyor [10.86 h]; Surveyor Helper [10.86 h]; Loader [11.14 h]; Water Tanker [11.14 h]; Dump Truck [11.14 h]; Plate Compactor [11.14 h]; less than 1.5 | 9.36325117568442E-005 | Cons. | Z2 | Storm | Cons | CS.UNSC | GRPs | SUB.C | Commrce | Strm |
| B6.33 42 11.361400 |  | Embedment & Test (69.64% Completed) | 122d | 2026-04-22 A | 2026-09-15 A | B6.33 42 11.361390 FF | 100% |  |  | Labor [32.58 h]; Foreman [16.29 h]; Plumber Helper [16.29 h]; Plumber [16.29 h]; Operator [32.58 h]; Surveyor [16.29 h]; Surveyor Helper [16.29 h]; Loader [16.71 h]; Water Tanker [16.71 h]; Dump Truck [16.71 h]; Plate Compactor [16.71 h]; Roller Compactor [16.71 h]; less than 1.5 | 0.000369023197924213 | Cons. | Z2 | Storm | Cons | CS.UNSC | GRPs | SUB.C | Commrce | Strm |
| B6.33 42 11.361390 |  | Pipe Laying (69.64% Completed) | 121d | 2026-04-23 A | 2026-09-15 A | B6.33 42 11.361380 FF | 100% |  |  | Labor [21.72 h]; Foreman [10.86 h]; Plumber Helper [10.86 h]; Plumber [10.86 h]; Operator [10.86 h]; Surveyor [10.86 h]; Surveyor Helper [10.86 h]; Mobile Crane [11.14 h]; less than 1.5 | 0.000831679147560537 | Cons. | Z2 | Storm | Cons | CS.UNSC | GRPs | SUB.C | Commrce | Strm |
| B6.33 42 11.361410 |  | Backfilling & Warrning Tape (69.64% Completed) | 116d | 2026-04-29 A | 2026-09-15 A | B6.33 42 11.361400 FF, B6.33 42 11.13.55 SS | 100% |  |  | Labor [32.58 h]; Foreman [16.29 h]; Operator [65.16 h]; Surveyor [16.29 h]; Surveyor Helper [16.29 h]; Loader [16.71 h]; Water Tanker [16.71 h]; Dump Truck [16.71 h]; Plate Compactor [16.71 h]; Roller Compactor [16.71 h]; less than 1.5 | 0.000181757694499985 | Cons. | Z2 | Storm | Cons | CS.UNSC | GRPs | SUB.C | Commrce | Strm |
| B6.33 42 11.361370_R |  | Excavation(Rem) | 2.28d | 2026-10-21 | 2026-10-24 | B6.33 42 11.361320_R SS, B6.33 42 11.361370 |  | 106.48d | 0d | Labor [9.47 h]; Foreman [4.73 h]; Operator [9.47 h]; Surveyor [4.73 h]; Surveyor Helper [4.73 h]; Excavator (With Bucket) [4.86 h]; Water Tanker [4.86 h]; Dump Truck [4.86 h]; Plate Compactor [4.86 h]; less than 1.5 | 0.000369023197924213 | Cons. | Z2 | Storm | Cons | CS.UNSC | GRPs | SUB.C | Commrce | Strm |
| B6.33 42 11.361380_R |  | Sand Bedding(Rem) | 2.28d | 2026-10-21 | 2026-10-24 | B6.33 42 11.361370_R FF, B6.33 42 11.361380 |  | 106.48d | 0d | Labor [9.47 h]; Foreman [4.73 h]; Operator [18.93 h]; Surveyor [4.73 h]; Surveyor Helper [4.73 h]; Loader [4.86 h]; Water Tanker [4.86 h]; Dump Truck [4.86 h]; Plate Compactor [4.86 h]; less than 1.5 | 9.36325117568442E-005 | Cons. | Z2 | Storm | Cons | CS.UNSC | GRPs | SUB.C | Commrce | Strm |
| B6.33 42 11.361390_R |  | Pipe Laying(Rem) | 2.28d | 2026-10-21 | 2026-10-24 | B6.33 42 11.361380_R FF, B6.33 42 11.361390 |  | 106.48d | 0.28d | Labor [9.47 h]; Foreman [4.73 h]; Plumber Helper [4.73 h]; Plumber [4.73 h]; Operator [4.73 h]; Surveyor [4.73 h]; Surveyor Helper [4.73 h]; Mobile Crane [4.86 h]; less than 1.5 | 0.000831679147560537 | Cons. | Z2 | Storm | Cons | CS.UNSC | GRPs | SUB.C | Commrce | Strm |
| B6.33 42 11.361400_R |  | Embedment & Test(Rem) | 2.56d | 2026-10-21 | 2026-10-24 | B6.33 42 11.361390_R FF, B6.33 42 11.361400 |  | 106.2d | 0d | Labor [14.2 h]; Foreman [7.1 h]; Plumber Helper [7.1 h]; Plumber [7.1 h]; Operator [14.2 h]; Surveyor [7.1 h]; Surveyor Helper [7.1 h]; Loader [7.29 h]; Water Tanker [7.29 h]; Dump Truck [7.29 h]; Plate Compactor [7.29 h]; Roller Compactor [7.29 h]; less than 1.5 | 0.000369023197924213 | Cons. | Z2 | Storm | Cons | CS.UNSC | GRPs | SUB.C | Commrce | Strm |
| B6.33 42 11.361410_R |  | Backfilling & Warrning Tape(Rem) | 2.56d | 2026-10-21 | 2026-10-24 | B6.33 42 11.361400_R FF, B6.33 42 11.13.55_R SS, B6.33 42 11.361410 |  | 106.2d | 0d | Labor [14.2 h]; Foreman [7.1 h]; Operator [28.4 h]; Surveyor [7.1 h]; Surveyor Helper [7.1 h]; Loader [7.29 h]; Water Tanker [7.29 h]; Dump Truck [7.29 h]; Plate Compactor [7.29 h]; Roller Compactor [7.29 h]; less than 1.5 | 0.000181757694499985 | Cons. | Z2 | Storm | Cons | CS.UNSC | GRPs | SUB.C | Commrce | Strm |
|  | ?1100 | **?1100** |  | 2026-04-04 | 2026-10-25 |  |  |  |  |  |  |  |  |  |  |  |  |  |  |  |
|  | 3 | **Depth From 0.0m to 1.5m** |  | 2026-04-04 | 2026-10-24 |  |  |  |  |  |  |  |  |  |  |  |  |  |  |  |
| B6.33 42 11.361220 |  | Excavation (69.04% Completed) | 138d | 2026-04-04 A | 2026-09-15 A | B6.33 42 11.13.15 | 100% |  |  | Labor [21.53 h]; Foreman [10.76 h]; Operator [21.53 h]; Surveyor [10.76 h]; Surveyor Helper [10.76 h]; Excavator (With Bucket) [11.05 h]; Water Tanker [11.05 h]; Dump Truck [11.05 h]; Plate Compactor [11.05 h]; less than 1.5 | 0.000475033498418806 | Cons. | Z2 | Storm | Cons | CS.UNSC | GRPs | SUB.C | Commrce | Strm |
| B6.33 42 11.361230 |  | Sand Bedding (69.04% Completed) | 133d | 2026-04-09 A | 2026-09-15 A | B6.33 42 11.361220 FF | 100% |  |  | Labor [21.53 h]; Foreman [10.76 h]; Operator [43.06 h]; Surveyor [10.76 h]; Surveyor Helper [10.76 h]; Loader [11.05 h]; Water Tanker [11.05 h]; Dump Truck [11.05 h]; Plate Compactor [11.05 h]; less than 1.5 | 0.000120530578770628 | Cons. | Z2 | Storm | Cons | CS.UNSC | GRPs | SUB.C | Commrce | Strm |
| B6.33 42 11.361240 |  | Pipe Laying (69.04% Completed) | 127d | 2026-04-16 A | 2026-09-15 A | B6.33 42 11.361230 FF | 100% |  |  | Labor [21.53 h]; Foreman [10.76 h]; Plumber Helper [10.76 h]; Plumber [10.76 h]; Operator [10.76 h]; Surveyor [10.76 h]; Surveyor Helper [10.76 h]; Mobile Crane [11.05 h]; less than 1.5 | 0.00107059788449611 | Cons. | Z2 | Storm | Cons | CS.UNSC | GRPs | SUB.C | Commrce | Strm |
| B6.33 42 11.361250 |  | Embedment & Test (69.04% Completed) | 122d | 2026-04-22 A | 2026-09-15 A | B6.33 42 11.361240 FF | 100% |  |  | Labor [32.29 h]; Foreman [16.15 h]; Plumber Helper [16.15 h]; Plumber [16.15 h]; Operator [32.29 h]; Surveyor [16.15 h]; Surveyor Helper [16.15 h]; Loader [16.57 h]; Water Tanker [16.57 h]; Dump Truck [16.57 h]; Plate Compactor [16.57 h]; Roller Compactor [16.57 h]; less than 1.5 | 0.000475033498418806 | Cons. | Z2 | Storm | Cons | CS.UNSC | GRPs | SUB.C | Commrce | Strm |
| B6.33 42 11.361260 |  | Backfilling & Warrning Tape (69.04% Completed) | 117d | 2026-04-28 A | 2026-09-15 A | B6.33 42 11.361250 FF, B6.33 42 11.13.5 SS | 100% |  |  | Labor [32.29 h]; Foreman [16.15 h]; Operator [64.59 h]; Surveyor [16.15 h]; Surveyor Helper [16.15 h]; Loader [16.57 h]; Water Tanker [16.57 h]; Dump Truck [16.57 h]; Plate Compactor [16.57 h]; Roller Compactor [16.57 h]; less than 1.5 | 0.000233971723101799 | Cons. | Z2 | Storm | Cons | CS.UNSC | GRPs | SUB.C | Commrce | Strm |
| B6.33 42 11.361220_R |  | Excavation(Rem) | 2.28d | 2026-10-21 | 2026-10-24 | B6.33 42 11.13.15, B6.33 42 11.361220 |  | 42.32d | 0d | Labor [9.66 h]; Foreman [4.83 h]; Operator [9.66 h]; Surveyor [4.83 h]; Surveyor Helper [4.83 h]; Excavator (With Bucket) [4.95 h]; Water Tanker [4.95 h]; Dump Truck [4.95 h]; Plate Compactor [4.95 h]; less than 1.5 | 0.000475033498418806 | Cons. | Z2 | Storm | Cons | CS.UNSC | GRPs | SUB.C | Commrce | Strm |
| B6.33 42 11.361230_R |  | Sand Bedding(Rem) | 2.28d | 2026-10-21 | 2026-10-24 | B6.33 42 11.361220_R FF, B6.33 42 11.361230 |  | 110.48d | 0d | Labor [9.66 h]; Foreman [4.83 h]; Operator [19.31 h]; Surveyor [4.83 h]; Surveyor Helper [4.83 h]; Loader [4.95 h]; Water Tanker [4.95 h]; Dump Truck [4.95 h]; Plate Compactor [4.95 h]; less than 1.5 | 0.000120530578770628 | Cons. | Z2 | Storm | Cons | CS.UNSC | GRPs | SUB.C | Commrce | Strm |
| B6.33 42 11.361240_R |  | Pipe Laying(Rem) | 2.28d | 2026-10-21 | 2026-10-24 | B6.33 42 11.361230_R FF, B6.33 42 11.361240 |  | 110.48d | 0.28d | Labor [9.66 h]; Foreman [4.83 h]; Plumber Helper [4.83 h]; Plumber [4.83 h]; Operator [4.83 h]; Surveyor [4.83 h]; Surveyor Helper [4.83 h]; Mobile Crane [4.95 h]; less than 1.5 | 0.00107059788449611 | Cons. | Z2 | Storm | Cons | CS.UNSC | GRPs | SUB.C | Commrce | Strm |
| B6.33 42 11.361250_R |  | Embedment & Test(Rem) | 2.56d | 2026-10-21 | 2026-10-24 | B6.33 42 11.361240_R FF, B6.33 42 11.361250 |  | 110.2d | 0d | Labor [14.48 h]; Foreman [7.24 h]; Plumber Helper [7.24 h]; Plumber [7.24 h]; Operator [14.48 h]; Surveyor [7.24 h]; Surveyor Helper [7.24 h]; Loader [7.43 h]; Water Tanker [7.43 h]; Dump Truck [7.43 h]; Plate Compactor [7.43 h]; Roller Compactor [7.43 h]; less than 1.5 | 0.000475033498418806 | Cons. | Z2 | Storm | Cons | CS.UNSC | GRPs | SUB.C | Commrce | Strm |
| B6.33 42 11.361260_R |  | Backfilling & Warrning Tape(Rem) | 2.56d | 2026-10-21 | 2026-10-24 | B6.33 42 11.361250_R FF, B6.33 42 11.13.5_R SS, B6.33 42 11.361260, B6.33 42 11.361210_R |  | 110.2d | 0d | Labor [14.48 h]; Foreman [7.24 h]; Operator [28.97 h]; Surveyor [7.24 h]; Surveyor Helper [7.24 h]; Loader [7.43 h]; Water Tanker [7.43 h]; Dump Truck [7.43 h]; Plate Compactor [7.43 h]; Roller Compactor [7.43 h]; less than 1.5 | 0.000233971723101799 | Cons. | Z2 | Storm | Cons | CS.UNSC | GRPs | SUB.C | Commrce | Strm |

| ID | WBS | Activity | Duration | Start | Finish | Predecessors | Complete | Remaining | Planned start | Planned finish | Total float | Free float | Resources | Cost | Actual cost | Open End | Weight % | DMM2 Weekly Progress | DMM2 Zones | Networks & Stations | DMM2 Phases | UNASCO | Networks Components | Subcontractors works | Dmm2 Roads | Yellow Sheet |
| --- | --- | --- | --- | --- | --- | --- | --- | --- | --- | --- | --- | --- | --- | --- | --- | --- | --- | --- | --- | --- | --- | --- | --- | --- | --- | --- |
|  | 4 | **Depth From 1.5m to 2.5m** |  | 2026-04-07 | 2026-10-25 |  |  |  |  |  |  |  |  |  |  |  |  |  |  |  |  |  |  |  |  |  |
| B6.33 42 11.13.65 |  | Excavation | 26.18d | 2026-04-07 A | 2026-05-07 A | B1.2.31 23 23.01.3 | 100% |  |  |  |  |  | Labor [28.35 h]; Foreman [14.17 h]; Operator [28.35 h]; Surveyor [14.17 h]; Surveyor Helper [14.17 h]; Excavator (With Bucket) [16 h]; Water Tanker [16 h]; Dump Truck [16 h]; Plate Compactor [16 h]; 1.51m - 2.5m [76.18] | 104,406.58 | 104,406.58 | UDF_G3 | 0.0225663973950109 | Cons. | Z2 | Storm | Cons | CS.UNSC | GRPs | SUB.C | Commrce | Strm |
| B6.33 42 11.13.75 |  | Sand Bedding | 25.18d | 2026-04-11 A | 2026-05-10 A | B6.33 42 11.13.65 | 100% |  |  |  |  |  | Labor [28.35 h]; Foreman [14.17 h]; Operator [56.7 h]; Surveyor [14.17 h]; Surveyor Helper [14.17 h]; Loader [16 h]; Water Tanker [16 h]; Dump Truck [16 h]; Plate Compactor [16 h]; 1.51m - 2.5m [19.01] | 26,054.9 | 26,054.9 |  | 0.00563149499143729 | Cons. | Z2 | Storm | Cons | CS.UNSC | GRPs | SUB.C | Commrce | Strm |
| B6.33 42 11.13.85 |  | Pipe Laying | 25.18d | 2026-04-13 A | 2026-05-12 A | B6.33 42 11.13.75 | 100% |  |  |  |  |  | Labor [28.35 h]; Foreman [14.17 h]; Plumber Helper [14.17 h]; Plumber [14.17 h]; Operator [14.17 h]; Surveyor [14.17 h]; Surveyor Helper [14.17 h]; Mobile Crane [16 h]; 1.51m - 2.5m [171.04] | 234,421.73 | 234,421.73 |  | 0.0506678227369775 | Cons. | Z2 | Storm | Cons | CS.UNSC | GRPs | SUB.C | Commrce | Strm |
| B6.33 42 11.13.95 |  | Embedment & Test | 24.35d | 2026-04-16 A | 2026-05-14 A | B6.33 42 11.13.85 | 100% |  |  |  |  |  | Labor [56.7 h]; Foreman [28.35 h]; Plumber Helper [28.35 h]; Plumber [28.35 h]; Operator [56.7 h]; Surveyor [28.35 h]; Surveyor Helper [28.35 h]; Loader [32 h]; Water Tanker [32 h]; Dump Truck [32 h]; Plate Compactor [32 h]; Roller Compactor [32 h]; 1.51m - 2.5m [76.02] | 104,183.42 | 104,183.42 |  | 0.0225181638727701 | Cons. | Z2 | Storm | Cons | CS.UNSC | GRPs | SUB.C | Commrce | Strm |
| B6.33 42 11.13.105 |  | Backfilling & Warrning Tape (69.04% Completed) | 125d | 2026-04-19 A | 2026-09-15 A | B6.33 42 11.13.95, B6.33 42 11.361410 SS, B6.33 42 11.361310 SS | 100% |  |  |  |  |  | Labor [53.82 h]; Foreman [26.91 h]; Operator [107.65 h]; Surveyor [26.91 h]; Surveyor Helper [26.91 h]; Loader [27.62 h]; Water Tanker [27.62 h]; Dump Truck [27.62 h]; Plate Compactor [27.62 h]; Roller Compactor [27.62 h]; 1.51m - 2.5m [26.23] | 35,951.18 | 35,951.18 |  | 0.0112551738898955 | Cons. | Z2 | Storm | Cons | CS.UNSC | GRPs | SUB.C | Commrce | Strm |
| B6.33 42 11.13.105_R |  | Backfilling & Warrning Tape(Rem) | 3.12d | 2026-10-21 | 2026-10-25 | B6.33 42 11.13.95, B6.33 42 11.361410_R SS, B6.33 42 11.361310_R SS, B6.33 42 11.13.105 |  |  |  |  | 106.2d | 2.02d | Labor [24.14 h]; Foreman [12.07 h]; Operator [48.28 h]; Surveyor [12.07 h]; Surveyor Helper [12.07 h]; Loader [12.38 h]; Water Tanker [12.38 h]; Dump Truck [12.38 h]; Plate Compactor [12.38 h]; Roller Compactor [12.38 h]; 1.51m - 2.5m [11.76] | 16,122.45 |  |  | 0.0112551738898955 | Cons. | Z2 | Storm | Cons | CS.UNSC | GRPs | SUB.C | Commrce | Strm |
|  | ?1200 | **?1200** |  | 2026-04-01 | 2026-10-24 |  |  |  |  |  |  |  |  |  |  |  |  |  |  |  |  |  |  |  |  |  |
|  | 3 | **Depth From 0.0m to 1.5m** |  | 2026-04-01 | 2026-10-24 |  |  |  |  |  |  |  |  |  |  |  |  |  |  |  |  |  |  |  |  |  |
| B6.33 42 11.361270 |  | Excavation (53.98% Completed) | 140d | 2026-04-01 A | 2026-09-15 A | B6.33 42 11.361220 SS | 100% |  |  |  |  |  | Labor [16.83 h]; Foreman [8.42 h]; Operator [16.83 h]; Surveyor [8.42 h]; Surveyor Helper [8.42 h]; Excavator (With Bucket) [8.64 h]; Water Tanker [8.64 h]; Dump Truck [8.64 h]; Plate Compactor [8.64 h]; less than 1.5 |  |  |  | 0.000459937094867361 | Cons. | Z2 | Storm | Cons | CS.UNSC | GRPs | SUB.C | Commrce | Strm |
| B6.33 42 11.361280 |  | Sand Bedding (59.54% Completed) | 134d | 2026-04-08 A | 2026-09-15 A | B6.33 42 11.361270 FF | 100% |  |  |  |  |  | Labor [18.57 h]; Foreman [9.28 h]; Operator [37.13 h]; Surveyor [9.28 h]; Surveyor Helper [9.28 h]; Loader [9.53 h]; Water Tanker [9.53 h]; Dump Truck [9.53 h]; Plate Compactor [9.53 h]; less than 1.5 |  |  |  | 0.000116700157835121 | Cons. | Z2 | Storm | Cons | CS.UNSC | GRPs | SUB.C | Commrce | Strm |
| B6.33 42 11.361290 |  | Pipe Laying (53.87% Completed) | 128d | 2026-04-15 A | 2026-09-15 A | B6.33 42 11.361280 FF | 100% |  |  |  |  |  | Labor [16.8 h]; Foreman [8.4 h]; Plumber Helper [8.4 h]; Plumber [8.4 h]; Operator [8.4 h]; Surveyor [8.4 h]; Surveyor Helper [8.4 h]; Mobile Crane [8.62 h]; less than 1.5 |  |  |  | 0.00103657464664136 | Cons. | Z2 | Storm | Cons | CS.UNSC | GRPs | SUB.C | Commrce | Strm |
| B6.33 42 11.361300 |  | Embedment & Test (53.87% Completed) | 126d | 2026-04-18 A | 2026-09-15 A | B6.33 42 11.361290 FF | 100% |  |  |  |  |  | Labor [25.2 h]; Foreman [12.6 h]; Plumber Helper [12.6 h]; Plumber [12.6 h]; Operator [25.2 h]; Surveyor [12.6 h]; Surveyor Helper [12.6 h]; Loader [12.93 h]; Water Tanker [12.93 h]; Dump Truck [12.93 h]; Plate Compactor [12.93 h]; Roller Compactor [12.93 h]; less than 1.5 |  |  |  | 0.000459937094867361 | Cons. | Z2 | Storm | Cons | CS.UNSC | GRPs | SUB.C | Commrce | Strm |
| B6.33 42 11.361310 |  | Backfilling & Warrning Tape (53.87% Completed) | 119d | 2026-04-26 A | 2026-09-15 A | B6.33 42 11.361300 FF | 100% |  |  |  |  |  | Labor [33.6 h]; Foreman [16.8 h]; Operator [67.19 h]; Surveyor [16.8 h]; Surveyor Helper [16.8 h]; Loader [17.24 h]; Water Tanker [17.24 h]; Dump Truck [17.24 h]; Plate Compactor [17.24 h]; Roller Compactor [17.24 h]; less than 1.5 |  |  |  | 0.000226536181054072 | Cons. | Z2 | Storm | Cons | CS.UNSC | GRPs | SUB.C | Commrce | Strm |
| B6.33 42 11.361270_R |  | Excavation(Rem) | 2.28d | 2026-10-21 | 2026-10-24 | B6.33 42 11.361220_R SS, B6.33 42 11.361270 |  |  |  |  | 106.48d | 0d | Labor [14.35 h]; Foreman [7.18 h]; Operator [14.35 h]; Surveyor [7.18 h]; Surveyor Helper [7.18 h]; Excavator (With Bucket) [7.36 h]; Water Tanker [7.36 h]; Dump Truck [7.36 h]; Plate Compactor [7.36 h]; less than 1.5 |  |  |  | 0.000459937094867361 | Cons. | Z2 | Storm | Cons | CS.UNSC | GRPs | SUB.C | Commrce | Strm |
| B6.33 42 11.361280_R |  | Sand Bedding(Rem) | 2.28d | 2026-10-21 | 2026-10-24 | B6.33 42 11.361270_R FF, B6.33 42 11.361280 |  |  |  |  | 106.76d | 0d | Labor [12.62 h]; Foreman [6.31 h]; Operator [25.24 h]; Surveyor [6.31 h]; Surveyor Helper [6.31 h]; Loader [6.47 h]; Water Tanker [6.47 h]; Dump Truck [6.47 h]; Plate Compactor [6.47 h]; less than 1.5 |  |  |  | 0.000116700157835121 | Cons. | Z2 | Storm | Cons | CS.UNSC | GRPs | SUB.C | Commrce | Strm |
| B6.33 42 11.361290_R |  | Pipe Laying(Rem) | 2.28d | 2026-10-21 | 2026-10-24 | B6.33 42 11.361280_R FF, B6.33 42 11.361290 |  |  |  |  | 106.76d | 0.28d | Labor [14.39 h]; Foreman [7.19 h]; Plumber Helper [7.19 h]; Plumber [7.19 h]; Operator [7.19 h]; Surveyor [7.19 h]; Surveyor Helper [7.19 h]; Mobile Crane [7.38 h]; less than 1.5 |  |  |  | 0.00103657464664136 | Cons. | Z2 | Storm | Cons | CS.UNSC | GRPs | SUB.C | Commrce | Strm |
| B6.33 42 11.361300_R |  | Embedment & Test(Rem) | 2.56d | 2026-10-21 | 2026-10-24 | B6.33 42 11.361290_R FF, B6.33 42 11.361300 |  |  |  |  | 106.48d | 0.28d | Labor [21.58 h]; Foreman [10.79 h]; Plumber Helper [10.79 h]; Plumber [10.79 h]; Operator [21.58 h]; Surveyor [10.79 h]; Surveyor Helper [10.79 h]; Loader [11.07 h]; Water Tanker [11.07 h]; Dump Truck [11.07 h]; Plate Compactor [11.07 h]; Roller Compactor [11.07 h]; less than 1.5 |  |  |  | 0.000459937094867361 | Cons. | Z2 | Storm | Cons | CS.UNSC | GRPs | SUB.C | Commrce | Strm |
| B6.33 42 11.361310_R |  | Backfilling & Warrning Tape(Rem) | 2.84d | 2026-10-21 | 2026-10-24 | B6.33 42 11.361300_R FF, B6.33 42 11.361310 |  |  |  |  | 106.2d | 0d | Labor [28.77 h]; Foreman [14.39 h]; Operator [57.55 h]; Surveyor [14.39 h]; Surveyor Helper [14.39 h]; Loader [14.76 h]; Water Tanker [14.76 h]; Dump Truck [14.76 h]; Plate Compactor [14.76 h]; Roller Compactor [14.76 h]; less than 1.5 |  |  |  | 0.000226536181054072 | Cons. | Z2 | Storm | Cons | CS.UNSC | GRPs | SUB.C | Commrce | Strm |
|  | 4 | **Depth From 1.5m to 2.5m** |  | 2026-04-07 | 2026-10-24 |  |  |  |  |  |  |  |  |  |  |  |  |  |  |  |  |  |  |  |  |  |
| B6.33 42 11.13.115 |  | Excavation (70.34% Completed) | 135d | 2026-04-07 A | 2026-09-15 A | B6.33 42 11.13.65 | 100% |  |  |  |  |  | Labor [21.94 h]; Foreman [10.97 h]; Operator [21.94 h]; Surveyor [10.97 h]; Surveyor Helper [10.97 h]; Excavator (With Bucket) [11.26 h]; Water Tanker [11.26 h]; Dump Truck [11.26 h]; Plate Compactor [11.26 h]; 1.51m - 2.5m [15.45] | 22,257.06 | 22,257.06 |  | 0.00717119891552981 | Cons. | Z2 | Storm | Cons | CS.UNSC | GRPs | SUB.C | Commrce | Strm |
| B6.33 42 11.13.125 |  | Sand Bedding (70.34% Completed) | 128d | 2026-04-15 A | 2026-09-15 A | B6.33 42 11.13.115 FF | 100% |  |  |  |  |  | Labor [21.94 h]; Foreman [10.97 h]; Operator [43.87 h]; Surveyor [10.97 h]; Surveyor Helper [10.97 h]; Loader [11.26 h]; Water Tanker [11.26 h]; Dump Truck [11.26 h]; Plate Compactor [11.26 h]; 1.51m - 2.5m [3.86] | 5,559.4 | 5,559.4 |  | 0.00179123207638685 | Cons. | Z2 | Storm | Cons | CS.UNSC | GRPs | SUB.C | Commrce | Strm |
| B6.33 42 11.13.135 |  | Pipe Laying (70.34% Completed) | 126d | 2026-04-18 A | 2026-09-15 A | B6.33 42 11.13.125 FF | 100% |  |  |  |  |  | Labor [21.94 h]; Foreman [10.97 h]; Plumber Helper [10.97 h]; Plumber [10.97 h]; Operator [10.97 h]; Surveyor [10.97 h]; Surveyor Helper [10.97 h]; Mobile Crane [11.26 h]; 1.51m - 2.5m [34.69] | 49,983.59 | 49,983.59 |  | 0.0161046553656801 | Cons. | Z2 | Storm | Cons | CS.UNSC | GRPs | SUB.C | Commrce | Strm |
| B6.33 42 11.13.145 |  | Embedment & Test (70.34% Completed) | 122d | 2026-04-22 A | 2026-09-15 A | B6.33 42 11.13.135 FF | 100% |  |  |  |  |  | Labor [43.87 h]; Foreman [21.94 h]; Plumber Helper [21.94 h]; Plumber [21.94 h]; Operator [43.87 h]; Surveyor [21.94 h]; Surveyor Helper [21.94 h]; Loader [22.51 h]; Water Tanker [22.51 h]; Dump Truck [22.51 h]; Plate Compactor [22.51 h]; Roller Compactor [22.51 h]; 1.51m - 2.5m [15.42] | 22,212.09 | 22,212.09 |  | 0.00715671164464662 | Cons. | Z2 | Storm | Cons | CS.UNSC | GRPs | SUB.C | Commrce | Strm |
| B6.33 42 11.13.155 |  | Backfilling & Warrning Tape (70.34% Completed) | 118d | 2026-04-27 A | 2026-09-15 A | B6.33 42 11.13.145 FF, B6.33 42 11.03-113 SS | 100% |  |  |  |  |  | Labor [54.84 h]; Foreman [27.42 h]; Operator [109.68 h]; Surveyor [27.42 h]; Surveyor Helper [27.42 h]; Loader [28.14 h]; Water Tanker [28.14 h]; Dump Truck [28.14 h]; Plate Compactor [28.14 h]; Roller Compactor [28.14 h]; 1.51m - 2.5m [7.7] | 11,093.3 | 11,093.3 |  | 0.00357424749187287 | Cons. | Z2 | Storm | Cons | CS.UNSC | GRPs | SUB.C | Commrce | Strm |
| B6.33 42 11.13.115_R |  | Excavation(Rem) | 2.28d | 2026-09-24 A | 2026-10-22 | B6.33 42 11.13.65, B6.33 42 11.13.115 | 51% | 1.12d | 2026-09-16 | 2026-09-19 | 111.04d | 0d | Labor [9.25 h]; Foreman [4.62 h]; Operator [9.25 h]; Surveyor [4.62 h]; Surveyor Helper [4.62 h]; Excavator (With Bucket) [4.74 h]; Water Tanker [4.74 h]; Dump Truck [4.74 h]; Plate Compactor [4.74 h]; 1.51m - 2.5m [6.51] | 9,382.81 | 4,785.23 |  | 0.00717119891552981 | Cons. | Z2 | Storm | Cons | CS.UNSC | GRPs | SUB.C | Commrce | Strm |
| B6.33 42 11.13.125_R |  | Sand Bedding(Rem) | 2.28d | 2026-09-26 A | 2026-10-22 | B6.33 42 11.13.115_R FF, B6.33 42 11.13.125 | 51% | 1.12d | 2026-09-16 | 2026-09-19 | 112.2d |  | Labor [9.25 h]; Foreman [4.62 h]; Operator [18.5 h]; Surveyor [4.62 h]; Surveyor Helper [4.62 h]; Loader [4.74 h]; Water Tanker [4.74 h]; Dump Truck [4.74 h]; Plate Compactor [4.74 h]; 1.51m - 2.5m [1.63] | 2,343.65 | 1,195.26 |  | 0.00179123207638685 | Cons. | Z2 | Storm | Cons | CS.UNSC | GRPs | SUB.C | Commrce | Strm |
| B6.33 42 11.13.135_R |  | Pipe Laying(Rem) | 2.28d | 2026-09-28 A | 2026-10-15 A | B6.33 42 11.13.125_R FF, B6.33 42 11.13.135 | 100% |  | 2026-09-16 | 2026-09-19 |  |  | Labor [9.25 h]; Foreman [4.62 h]; Plumber Helper [4.62 h]; Plumber [4.62 h]; Operator [4.62 h]; Surveyor [4.62 h]; Surveyor Helper [4.62 h]; Mobile Crane [4.74 h]; 1.51m - 2.5m [14.62] | 21,071.37 | 21,071.37 |  | 0.0161046553656801 | Cons. | Z2 | Storm | Cons | CS.UNSC | GRPs | SUB.C | Commrce | Strm |
| B6.33 42 11.13.145_R |  | Embedment & Test(Rem) | 2.84d | 2026-09-30 A | 2026-10-22 | B6.33 42 11.13.135_R FF, B6.33 42 11.13.145 | 51% | 1.39d | 2026-09-16 | 2026-09-19 | 111.9d | 1.42d | Labor [18.5 h]; Foreman [9.25 h]; Plumber Helper [9.25 h]; Plumber [9.25 h]; Operator [18.5 h]; Surveyor [9.25 h]; Surveyor Helper [9.25 h]; Loader [9.49 h]; Water Tanker [9.49 h]; Dump Truck [9.49 h]; Plate Compactor [9.49 h]; Roller Compactor [9.49 h]; 1.51m - 2.5m [6.5] | 9,363.86 | 4,775.57 |  | 0.00715671164464662 | Cons. | Z2 | Storm | Cons | CS.UNSC | GRPs | SUB.C | Commrce | Strm |
| B6.33 42 11.13.155_R |  | Backfilling & Warrning Tape(Rem) | 3.12d | 2026-10-18 A | 2026-10-24 | B6.33 42 11.13.145_R FF, B6.33 42 11.03-113_R SS, B6.33 42 11.13.155 | 10% | 2.81d | 2026-10-18 | 2026-10-22 | 110.48d | 110.51d | Labor [23.12 h]; Foreman [11.56 h]; Operator [46.24 h]; Surveyor [11.56 h]; Surveyor Helper [11.56 h]; Loader [11.86 h]; Water Tanker [11.86 h]; Dump Truck [11.86 h]; Plate Compactor [11.86 h]; Roller Compactor [11.86 h]; 1.51m - 2.5m [3.25] | 4,676.55 | 467.66 |  | 0.00357424749187287 | Cons. | Z2 | Storm | Cons | CS.UNSC | GRPs | SUB.C | Commrce | Strm |

| ID | WBS | Activity | Duration | Start | Finish | Predecessors | Complete | Remaining | Planned start | Planned finish | Total float | Free float | Resources | Cost | Actual cost | Weight % | DMM2 Weekly Progress | DMM2 Zones | Networks & Stations | DMM2 Phases | UNASCO | Networks Components | Subcontractors works | Dmm2 Roads | Yellow Sheet |
| --- | --- | --- | --- | --- | --- | --- | --- | --- | --- | --- | --- | --- | --- | --- | --- | --- | --- | --- | --- | --- | --- | --- | --- | --- | --- |
|  | ?1300 | **?1300** |  | 2026-04-07 | 2026-10-24 |  |  |  |  |  |  |  |  |  |  |  |  |  |  |  |  |  |  |  |  |
|  | 3 | **Depth From 0.0m to 1.5m** |  | 2026-04-07 | 2026-10-24 |  |  |  |  |  |  |  |  |  |  |  |  |  |  |  |  |  |  |  |  |
| B6.33 42 11.361420 |  | Excavation (70.13% Completed) | 135d | 2026-04-07 A | 2026-09-15 A | B6.33 42 11.13.115 SS | 100% |  |  |  |  |  | Labor [21.87 h]; Foreman [10.94 h]; Operator [21.87 h]; Surveyor [10.94 h]; Surveyor Helper [10.94 h]; Excavator (With Bucket) [11.22 h]; Water Tanker [11.22 h]; Dump Truck [11.22 h]; Plate Compactor [11.22 h]; less than 1.5 |  |  | 0.000643108319654362 | Cons. | Z2 | Storm | Cons | CS.UNSC | GRPs | SUB.C | Commrce | Strm |
| B6.33 42 11.361430 |  | Sand Bedding (70.13% Completed) | 132d | 2026-04-11 A | 2026-09-15 A | B6.33 42 11.361420 FF | 100% |  |  |  |  |  | Labor [21.87 h]; Foreman [10.94 h]; Operator [43.74 h]; Surveyor [10.94 h]; Surveyor Helper [10.94 h]; Loader [11.22 h]; Water Tanker [11.22 h]; Dump Truck [11.22 h]; Plate Compactor [11.22 h]; less than 1.5 |  |  | 0.000163176319645162 | Cons. | Z2 | Storm | Cons | CS.UNSC | GRPs | SUB.C | Commrce | Strm |
| B6.33 42 11.361440 |  | Pipe Laying (70.13% Completed) | 130d | 2026-04-13 A | 2026-09-15 A | B6.33 42 11.361430 FF | 100% |  |  |  |  |  | Labor [21.87 h]; Foreman [10.94 h]; Plumber Helper [10.94 h]; Plumber [10.94 h]; Operator [10.94 h]; Surveyor [10.94 h]; Surveyor Helper [10.94 h]; Mobile Crane [11.22 h]; less than 1.5 |  |  | 0.00144939337713147 | Cons. | Z2 | Storm | Cons | CS.UNSC | GRPs | SUB.C | Commrce | Strm |
| B6.33 42 11.361450 |  | Embedment & Test (70.13% Completed) | 127d | 2026-04-16 A | 2026-09-15 A | B6.33 42 11.361440 FF | 100% |  |  |  |  |  | Labor [32.81 h]; Foreman [16.4 h]; Plumber Helper [16.4 h]; Plumber [16.4 h]; Operator [32.81 h]; Surveyor [16.4 h]; Surveyor Helper [16.4 h]; Loader [16.83 h]; Water Tanker [16.83 h]; Dump Truck [16.83 h]; Plate Compactor [16.83 h]; Roller Compactor [16.83 h]; less than 1.5 |  |  | 0.000643108319654362 | Cons. | Z2 | Storm | Cons | CS.UNSC | GRPs | SUB.C | Commrce | Strm |
| B6.33 42 11.361460 |  | Backfilling & Warrning Tape (70.13% Completed) | 125d | 2026-04-19 A | 2026-09-15 A | B6.33 42 11.05-1.67, B6.33 42 11.361450 FF | 100% |  |  |  |  |  | Labor [43.74 h]; Foreman [21.87 h]; Operator [87.48 h]; Surveyor [21.87 h]; Surveyor Helper [21.87 h]; Loader [22.44 h]; Water Tanker [22.44 h]; Dump Truck [22.44 h]; Plate Compactor [22.44 h]; Roller Compactor [22.44 h]; less than 1.5 |  |  | 0.000316754844008863 | Cons. | Z2 | Storm | Cons | CS.UNSC | GRPs | SUB.C | Commrce | Strm |
| B6.33 42 11.361420_R |  | Excavation(Rem) | 2.28d | 2026-10-21 | 2026-10-24 | B6.33 42 11.13.115_R SS, B6.33 42 11.361420 |  |  |  |  | 111.04d | 0d | Labor [9.31 h]; Foreman [4.66 h]; Operator [9.31 h]; Surveyor [4.66 h]; Surveyor Helper [4.66 h]; Excavator (With Bucket) [4.78 h]; Water Tanker [4.78 h]; Dump Truck [4.78 h]; Plate Compactor [4.78 h]; less than 1.5 |  |  | 0.000643108319654362 | Cons. | Z2 | Storm | Cons | CS.UNSC | GRPs | SUB.C | Commrce | Strm |
| B6.33 42 11.361430_R |  | Sand Bedding(Rem) | 2.28d | 2026-10-21 | 2026-10-24 | B6.33 42 11.361420_R FF, B6.33 42 11.361430 |  |  |  |  | 111.04d | 0d | Labor [9.31 h]; Foreman [4.66 h]; Operator [18.63 h]; Surveyor [4.66 h]; Surveyor Helper [4.66 h]; Loader [4.78 h]; Water Tanker [4.78 h]; Dump Truck [4.78 h]; Plate Compactor [4.78 h]; less than 1.5 |  |  | 0.000163176319645162 | Cons. | Z2 | Storm | Cons | CS.UNSC | GRPs | SUB.C | Commrce | Strm |
| B6.33 42 11.361440_R |  | Pipe Laying(Rem) | 2.28d | 2026-10-21 | 2026-10-24 | B6.33 42 11.361430_R FF, B6.33 42 11.361440 |  |  |  |  | 111.04d | 0.28d | Labor [9.31 h]; Foreman [4.66 h]; Plumber Helper [4.66 h]; Plumber [4.66 h]; Operator [4.66 h]; Surveyor [4.66 h]; Surveyor Helper [4.66 h]; Mobile Crane [4.78 h]; less than 1.5 |  |  | 0.00144939337713147 | Cons. | Z2 | Storm | Cons | CS.UNSC | GRPs | SUB.C | Commrce | Strm |
| B6.33 42 11.361450_R |  | Embedment & Test(Rem) | 2.56d | 2026-10-21 | 2026-10-24 | B6.33 42 11.361440_R FF, B6.33 42 11.361450 |  |  |  |  | 110.76d | 0.28d | Labor [13.97 h]; Foreman [6.99 h]; Plumber Helper [6.99 h]; Plumber [6.99 h]; Operator [13.97 h]; Surveyor [6.99 h]; Surveyor Helper [6.99 h]; Loader [7.17 h]; Water Tanker [7.17 h]; Dump Truck [7.17 h]; Plate Compactor [7.17 h]; Roller Compactor [7.17 h]; less than 1.5 |  |  | 0.000643108319654362 | Cons. | Z2 | Storm | Cons | CS.UNSC | GRPs | SUB.C | Commrce | Strm |
| B6.33 42 11.361460_R |  | Backfilling & Warrning Tape(Rem) | 2.84d | 2026-10-21 | 2026-10-24 | B6.33 42 11.05-1.67, B6.33 42 11.361450_R FF, B6.33 42 11.361460 |  |  |  |  | 110.48d |  | Labor [18.63 h]; Foreman [9.31 h]; Operator [37.25 h]; Surveyor [9.31 h]; Surveyor Helper [9.31 h]; Loader [9.56 h]; Water Tanker [9.56 h]; Dump Truck [9.56 h]; Plate Compactor [9.56 h]; Roller Compactor [9.56 h]; less than 1.5 |  |  | 0.000316754844008863 | Cons. | Z2 | Storm | Cons | CS.UNSC | GRPs | SUB.C | Commrce | Strm |
|  | 4 | **Depth From 1.5m to 2.5m** |  | 2026-04-08 | 2026-10-24 |  |  |  |  |  |  |  |  |  |  |  |  |  |  |  |  |  |  |  |  |
| B6.33 42 11.13.165 |  | Excavation | 117.23d | 2026-04-08 A | 2026-08-27 A | B6.33 42 11.361420 SS+1d, B6.33 42 11.361420 FF+1d | 100% |  |  |  |  |  | Labor [28.35 h]; Foreman [14.17 h]; Operator [28.35 h]; Surveyor [14.17 h]; Surveyor Helper [14.17 h]; Excavator (With Bucket) [16 h]; Water Tanker [16 h]; Dump Truck [16 h]; Plate Compactor [16 h]; 1.51m - 2.5m [9.65] | 16,242.62 | 16,242.62 | 0.0183708968689114 | Cons. | Z2 | Storm | Cons | CS.UNSC | GRPs | SUB.C | Commrce | Strm |
| B6.33 42 11.13.175 |  | Sand Bedding | 114.23d | 2026-04-14 A | 2026-08-30 A | B6.33 42 11.13.165 | 100% |  |  |  |  |  | Labor [28.35 h]; Foreman [14.17 h]; Operator [56.7 h]; Surveyor [14.17 h]; Surveyor Helper [14.17 h]; Loader [16 h]; Water Tanker [16 h]; Dump Truck [16 h]; Plate Compactor [16 h]; 1.51m - 2.5m [2.41] | 4,052.36 | 4,052.36 | 0.00458334660649189 | Cons. | Z2 | Storm | Cons | CS.UNSC | GRPs | SUB.C | Commrce | Strm |
| B6.33 42 11.13.185 |  | Pipe Laying (70.34% Completed) | 124d | 2026-04-20 A | 2026-09-15 A | B6.33 42 11.13.175 | 100% |  |  |  |  |  | Labor [21.94 h]; Foreman [10.97 h]; Plumber Helper [10.97 h]; Plumber [10.97 h]; Operator [10.97 h]; Surveyor [10.97 h]; Surveyor Helper [10.97 h]; Mobile Crane [11.26 h]; 1.51m - 2.5m [15.24] | 25,646.75 | 25,646.75 | 0.041235721510972 | Cons. | Z2 | Storm | Cons | CS.UNSC | GRPs | SUB.C | Commrce | Strm |
| B6.33 42 11.13.195 |  | Embedment & Test (70.34% Completed) | 119d | 2026-04-26 A | 2026-09-15 A | B6.33 42 11.13.185 FF | 100% |  |  |  |  |  | Labor [43.87 h]; Foreman [21.94 h]; Plumber Helper [21.94 h]; Plumber [21.94 h]; Operator [43.87 h]; Surveyor [21.94 h]; Surveyor Helper [21.94 h]; Loader [22.51 h]; Water Tanker [22.51 h]; Dump Truck [22.51 h]; Plate Compactor [22.51 h]; Roller Compactor [22.51 h]; 1.51m - 2.5m [6.77] | 11,399.55 | 11,399.55 | 0.0183285871101493 | Cons. | Z2 | Storm | Cons | CS.UNSC | GRPs | SUB.C | Commrce | Strm |
| B6.33 42 11.13.205 |  | Backfilling & Warrning Tape (70.34% Completed) | 118d | 2026-04-27 A | 2026-09-15 A | B6.33 42 11.13.195 FF, B6.33 42 11.01-1.9 SS, B6.33 42 11.05-1.69 SS, B6.33 42 11.03-115 SS | 100% |  |  |  |  |  | Labor [54.84 h]; Foreman [27.42 h]; Operator [109.68 h]; Surveyor [27.42 h]; Surveyor Helper [27.42 h]; Loader [28.14 h]; Water Tanker [28.14 h]; Dump Truck [28.14 h]; Plate Compactor [28.14 h]; Roller Compactor [28.14 h]; 1.51m - 2.5m [3.39] | 5,701.27 | 5,701.27 | 0.00916669321298373 | Cons. | Z2 | Storm | Cons | CS.UNSC | GRPs | SUB.C | Commrce | Strm |
| B6.33 42 11.13.185_R |  | Pipe Laying(Rem) | 2.28d | 2026-10-14 A | 2026-10-24 | B6.33 42 11.13.175, B6.33 42 11.13.185 | 10% | 2.05d | 2026-10-14 | 2026-10-17 | 111.27d | 0.79d | Labor [9.25 h]; Foreman [4.62 h]; Plumber Helper [4.62 h]; Plumber [4.62 h]; Operator [4.62 h]; Surveyor [4.62 h]; Surveyor Helper [4.62 h]; Mobile Crane [4.74 h]; 1.51m - 2.5m [6.42] | 10,811.79 | 1,081.18 | 0.041235721510972 | Cons. | Z2 | Storm | Cons | CS.UNSC | GRPs | SUB.C | Commrce | Strm |
| B6.33 42 11.13.205_R |  | Backfilling & Warrning Tape(Rem) | 3.12d | 2026-10-20 A | 2026-10-24 | B6.33 42 11.13.195_R FF, B6.33 42 11.01-1.9_R SS, B6.33 42 11.05-1.69_R SS, B6.33 42 11.03-115_R SS, B6.33 42 11.13.205 | 10% | 2.81d |  |  | 110.48d |  | Labor [23.12 h]; Foreman [11.56 h]; Operator [46.24 h]; Surveyor [11.56 h]; Surveyor Helper [11.56 h]; Loader [11.86 h]; Water Tanker [11.86 h]; Dump Truck [11.86 h]; Plate Compactor [11.86 h]; Roller Compactor [11.86 h]; 1.51m - 2.5m [1.43] | 2,403.46 | 240.35 | 0.00916669321298373 | Cons. | Z2 | Storm | Cons | CS.UNSC | GRPs | SUB.C | Commrce | Strm |
| B6.33 42 11.13.195_R |  | Embedment & Test(Rem) | 2.84d | 2026-10-21 | 2026-10-24 | B6.33 42 11.13.185_R FF, B6.33 42 11.13.195 |  |  |  |  | 110.48d | 0d | Labor [18.5 h]; Foreman [9.25 h]; Plumber Helper [9.25 h]; Plumber [9.25 h]; Operator [18.5 h]; Surveyor [9.25 h]; Surveyor Helper [9.25 h]; Loader [9.49 h]; Water Tanker [9.49 h]; Dump Truck [9.49 h]; Plate Compactor [9.49 h]; Roller Compactor [9.49 h]; 1.51m - 2.5m [2.86] | 4,805.66 |  | 0.0183285871101493 | Cons. | Z2 | Storm | Cons | CS.UNSC | GRPs | SUB.C | Commrce | Strm |
|  | ?1400 | **?1400** |  | 2026-04-07 | 2026-10-24 |  |  |  |  |  |  |  |  |  |  |  |  |  |  |  |  |  |  |  |  |
|  | 3 | **Depth From 0.0m to 1.5m** |  | 2026-04-07 | 2026-10-24 |  |  |  |  |  |  |  |  |  |  |  |  |  |  |  |  |  |  |  |  |
| B6.33 42 11.361470 |  | Excavation (71.44% Completed) | 135d | 2026-04-07 A | 2026-09-15 A | B6.33 42 11.361420 SS | 100% |  |  |  |  |  | Labor [22.28 h]; Foreman [11.14 h]; Operator [22.28 h]; Surveyor [11.14 h]; Surveyor Helper [11.14 h]; Excavator (With Bucket) [11.43 h]; Water Tanker [11.43 h]; Dump Truck [11.43 h]; Plate Compactor [11.43 h]; less than 1.5 |  |  | 0.000573327095139038 | Cons. | Z2 | Storm | Cons | CS.UNSC | GRPs | SUB.C | Commrce | Strm |
| B6.33 42 11.361480 |  | Sand Bedding (71.44% Completed) | 132d | 2026-04-11 A | 2026-09-15 A | B6.33 42 11.361470 FF | 100% |  |  |  |  |  | Labor [22.28 h]; Foreman [11.14 h]; Operator [44.56 h]; Surveyor [11.14 h]; Surveyor Helper [11.14 h]; Loader [11.43 h]; Water Tanker [11.43 h]; Dump Truck [11.43 h]; Plate Compactor [11.43 h]; less than 1.5 |  |  | 0.000145470681187766 | Cons. | Z2 | Storm | Cons | CS.UNSC | GRPs | SUB.C | Commrce | Strm |
| B6.33 42 11.361490 |  | Pipe Laying (71.44% Completed) | 130d | 2026-04-13 A | 2026-09-15 A | B6.33 42 11.361480 FF | 100% |  |  |  |  |  | Labor [22.28 h]; Foreman [11.14 h]; Plumber Helper [11.14 h]; Plumber [11.14 h]; Operator [11.14 h]; Surveyor [11.14 h]; Surveyor Helper [11.14 h]; Mobile Crane [11.43 h]; less than 1.5 |  |  | 0.00129212524426858 | Cons. | Z2 | Storm | Cons | CS.UNSC | GRPs | SUB.C | Commrce | Strm |
| B6.33 42 11.361500 |  | Embedment & Test (71.44% Completed) | 127d | 2026-04-16 A | 2026-09-15 A | B6.33 42 11.361490 FF | 100% |  |  |  |  |  | Labor [33.42 h]; Foreman [16.71 h]; Plumber Helper [16.71 h]; Plumber [16.71 h]; Operator [33.42 h]; Surveyor [16.71 h]; Surveyor Helper [16.71 h]; Loader [17.15 h]; Water Tanker [17.15 h]; Dump Truck [17.15 h]; Plate Compactor [17.15 h]; Roller Compactor [17.15 h]; less than 1.5 |  |  | 0.000573327095139038 | Cons. | Z2 | Storm | Cons | CS.UNSC | GRPs | SUB.C | Commrce | Strm |
| B6.33 42 11.361510 |  | Backfilling & Warrning Tape (71.44% Completed) | 125d | 2026-04-19 A | 2026-09-15 A | B6.33 42 11.361500 FF | 100% |  |  |  |  |  | Labor [44.56 h]; Foreman [22.28 h]; Operator [89.12 h]; Surveyor [22.28 h]; Surveyor Helper [22.28 h]; Loader [22.86 h]; Water Tanker [22.86 h]; Dump Truck [22.86 h]; Plate Compactor [22.86 h]; Roller Compactor [22.86 h]; less than 1.5 |  |  | 0.000282384987158032 | Cons. | Z2 | Storm | Cons | CS.UNSC | GRPs | SUB.C | Commrce | Strm |
| B6.33 42 11.361470_R |  | Excavation(Rem) | 2.28d | 2026-10-21 | 2026-10-24 | B6.33 42 11.361420_R SS, B6.33 42 11.361470 |  |  |  |  | 111.04d | 0d | Labor [8.91 h]; Foreman [4.45 h]; Operator [8.91 h]; Surveyor [4.45 h]; Surveyor Helper [4.45 h]; Excavator (With Bucket) [4.57 h]; Water Tanker [4.57 h]; Dump Truck [4.57 h]; Plate Compactor [4.57 h]; less than 1.5 |  |  | 0.000573327095139038 | Cons. | Z2 | Storm | Cons | CS.UNSC | GRPs | SUB.C | Commrce | Strm |
| B6.33 42 11.361480_R |  | Sand Bedding(Rem) | 2.28d | 2026-10-21 | 2026-10-24 | B6.33 42 11.361470_R FF, B6.33 42 11.361480 |  |  |  |  | 111.04d | 0d | Labor [8.91 h]; Foreman [4.45 h]; Operator [17.81 h]; Surveyor [4.45 h]; Surveyor Helper [4.45 h]; Loader [4.57 h]; Water Tanker [4.57 h]; Dump Truck [4.57 h]; Plate Compactor [4.57 h]; less than 1.5 |  |  | 0.000145470681187766 | Cons. | Z2 | Storm | Cons | CS.UNSC | GRPs | SUB.C | Commrce | Strm |
| B6.33 42 11.361490_R |  | Pipe Laying(Rem) | 2.28d | 2026-10-21 | 2026-10-24 | B6.33 42 11.361480_R FF, B6.33 42 11.361490 |  |  |  |  | 111.04d | 0.28d | Labor [8.91 h]; Foreman [4.45 h]; Plumber Helper [4.45 h]; Plumber [4.45 h]; Operator [4.45 h]; Surveyor [4.45 h]; Surveyor Helper [4.45 h]; Mobile Crane [4.57 h]; less than 1.5 |  |  | 0.00129212524426858 | Cons. | Z2 | Storm | Cons | CS.UNSC | GRPs | SUB.C | Commrce | Strm |
| B6.33 42 11.361500_R |  | Embedment & Test(Rem) | 2.56d | 2026-10-21 | 2026-10-24 | B6.33 42 11.361490_R FF, B6.33 42 11.361500 |  |  |  |  | 110.76d | 0.28d | Labor [13.36 h]; Foreman [6.68 h]; Plumber Helper [6.68 h]; Plumber [6.68 h]; Operator [13.36 h]; Surveyor [6.68 h]; Surveyor Helper [6.68 h]; Loader [6.85 h]; Water Tanker [6.85 h]; Dump Truck [6.85 h]; Plate Compactor [6.85 h]; Roller Compactor [6.85 h]; less than 1.5 |  |  | 0.000573327095139038 | Cons. | Z2 | Storm | Cons | CS.UNSC | GRPs | SUB.C | Commrce | Strm |
| B6.33 42 11.361510_R |  | Backfilling & Warrning Tape(Rem) | 2.84d | 2026-10-21 | 2026-10-24 | B6.33 42 11.361500_R FF, B6.33 42 11.361510 |  |  |  |  | 110.48d |  | Labor [17.81 h]; Foreman [8.91 h]; Operator [35.62 h]; Surveyor [8.91 h]; Surveyor Helper [8.91 h]; Loader [9.14 h]; Water Tanker [9.14 h]; Dump Truck [9.14 h]; Plate Compactor [9.14 h]; Roller Compactor [9.14 h]; less than 1.5 |  |  | 0.000282384987158032 | Cons. | Z2 | Storm | Cons | CS.UNSC | GRPs | SUB.C | Commrce | Strm |

| ID | WBS | Activity | Duration | Start | Finish | Predecessors | Complete | Remaining | Planned start | Planned finish | Total float | Free float | Resources | Cost | Actual cost | Weight % | DMM2 Weekly Progress | DMM2 Zones | Networks & Stations | DMM2 Phases | UNASCO | Networks Components | Subcontractors works | Dmm2 Roads | Yellow Sheet |
| --- | --- | --- | --- | --- | --- | --- | --- | --- | --- | --- | --- | --- | --- | --- | --- | --- | --- | --- | --- | --- | --- | --- | --- | --- | --- |
|  | 4 | **Depth From 1.5m to 2.5m** |  | 2026-04-18 | 2026-10-24 |  |  |  |  |  |  |  |  |  |  |  |  |  |  |  |  |  |  |  |  |
| B6.33 42 11.13.215 |  | Excavation (70.34% Completed) | 126d | 2026-04-18 A | 2026-09-15 A | B6.33 42 11.13.165 | 100% |  |  |  |  |  | Labor [21.94 h]; Foreman [10.97 h]; Operator [21.94 h]; Surveyor [10.97 h]; Surveyor Helper [10.97 h]; Excavator (With Bucket) [11.26 h]; Water Tanker [11.26 h]; Dump Truck [11.26 h]; Plate Compactor [11.26 h]; 1.51m - 2.5m [59.57] | 97,695.46 | 97,695.46 | 0.0322733482772296 | Cons. | Z2 | Storm | Cons | CS.UNSC | GRPs | SUB.C | Commrce | Strm |
| B6.33 42 11.13.225 |  | Sand Bedding (70.34% Completed) | 121d | 2026-04-23 A | 2026-09-15 A | B6.33 42 11.13.215 FF | 100% |  |  |  |  |  | Labor [21.94 h]; Foreman [10.97 h]; Operator [43.87 h]; Surveyor [10.97 h]; Surveyor Helper [10.97 h]; Loader [11.26 h]; Water Tanker [11.26 h]; Dump Truck [11.26 h]; Plate Compactor [11.26 h]; 1.51m - 2.5m [15.02] | 24,636.03 | 24,636.03 | 0.0081384248214535 | Cons. | Z2 | Storm | Cons | CS.UNSC | GRPs | SUB.C | Commrce | Strm |
| B6.33 42 11.13.235 |  | Pipe Laying (70.34% Completed) | 120d | 2026-04-25 A | 2026-09-15 A | B6.33 42 11.13.225 FF | 100% |  |  |  |  |  | Labor [21.94 h]; Foreman [10.97 h]; Plumber Helper [10.97 h]; Plumber [10.97 h]; Operator [10.97 h]; Surveyor [10.97 h]; Surveyor Helper [10.97 h]; Mobile Crane [11.26 h]; 1.51m - 2.5m [134.02] | 219,811.24 | 219,811.24 | 0.0726138644689961 | Cons. | Z2 | Storm | Cons | CS.UNSC | GRPs | SUB.C | Commrce | Strm |
| B6.33 42 11.13.245 |  | Embedment & Test (70.34% Completed) | 119d | 2026-04-26 A | 2026-09-15 A | B6.33 42 11.13.235 FF | 100% |  |  |  |  |  | Labor [43.87 h]; Foreman [21.94 h]; Plumber Helper [21.94 h]; Plumber [21.94 h]; Operator [43.87 h]; Surveyor [21.94 h]; Surveyor Helper [21.94 h]; Loader [22.51 h]; Water Tanker [22.51 h]; Dump Truck [22.51 h]; Plate Compactor [22.51 h]; Roller Compactor [22.51 h]; 1.51m - 2.5m [59.57] | 97,695.46 | 97,695.46 | 0.0322733482772296 | Cons. | Z2 | Storm | Cons | CS.UNSC | GRPs | SUB.C | Commrce | Strm |
| B6.33 42 11.13.255 |  | Backfilling & Warrning Tape (70.34% Completed) | 115d | 2026-04-30 A | 2026-09-15 A | B6.33 42 11.13.245 FF, B6.33 42 11.361560 SS | 100% |  |  |  |  |  | Labor [54.84 h]; Foreman [27.42 h]; Operator [109.68 h]; Surveyor [27.42 h]; Surveyor Helper [27.42 h]; Loader [28.14 h]; Water Tanker [28.14 h]; Dump Truck [28.14 h]; Plate Compactor [28.14 h]; Roller Compactor [28.14 h]; 1.51m - 2.5m [29.79] | 48,854.81 | 48,854.81 | 0.0161390124481553 | Cons. | Z2 | Storm | Cons | CS.UNSC | GRPs | SUB.C | Commrce | Strm |
| B6.33 42 11.13.255_R |  | Backfilling & Warrning Tape(Rem) | 3.12d | 2026-10-18 A | 2026-10-24 | B6.33 42 11.13.245_R FF, B6.33 42 11.361560_R SS, B6.33 42 11.13.255 | 10% | 2.81d | 2026-10-18 | 2026-10-22 | 105.48d | 10.44d | Labor [23.12 h]; Foreman [11.56 h]; Operator [46.24 h]; Surveyor [11.56 h]; Surveyor Helper [11.56 h]; Loader [11.86 h]; Water Tanker [11.86 h]; Dump Truck [11.86 h]; Plate Compactor [11.86 h]; Roller Compactor [11.86 h]; 1.51m - 2.5m [12.56] | 20,595.52 | 2,059.55 | 0.0161390124481553 | Cons. | Z2 | Storm | Cons | CS.UNSC | GRPs | SUB.C | Commrce | Strm |
| B6.33 42 11.13.215_R |  | Excavation(Rem) | 2.28d | 2026-10-21 | 2026-10-24 | B6.33 42 11.13.165, B6.33 42 11.13.215 |  |  |  |  | 106.04d | 0d | Labor [9.25 h]; Foreman [4.62 h]; Operator [9.25 h]; Surveyor [4.62 h]; Surveyor Helper [4.62 h]; Excavator (With Bucket) [4.74 h]; Water Tanker [4.74 h]; Dump Truck [4.74 h]; Plate Compactor [4.74 h]; 1.51m - 2.5m [25.11] | 41,185.06 |  | 0.0322733482772296 | Cons. | Z2 | Storm | Cons | CS.UNSC | GRPs | SUB.C | Commrce | Strm |
| B6.33 42 11.13.225_R |  | Sand Bedding(Rem) | 2.28d | 2026-10-21 | 2026-10-24 | B6.33 42 11.13.215_R FF, B6.33 42 11.13.225 |  |  |  |  | 106.04d | 0d | Labor [9.25 h]; Foreman [4.62 h]; Operator [18.5 h]; Surveyor [4.62 h]; Surveyor Helper [4.62 h]; Loader [4.74 h]; Water Tanker [4.74 h]; Dump Truck [4.74 h]; Plate Compactor [4.74 h]; 1.51m - 2.5m [6.33] | 10,385.71 |  | 0.0081384248214535 | Cons. | Z2 | Storm | Cons | CS.UNSC | GRPs | SUB.C | Commrce | Strm |
| B6.33 42 11.13.235_R |  | Pipe Laying(Rem) | 2.28d | 2026-10-21 | 2026-10-24 | B6.33 42 11.13.225_R FF, B6.33 42 11.13.235 |  |  |  |  | 106.04d | 0.56d | Labor [9.25 h]; Foreman [4.62 h]; Plumber Helper [4.62 h]; Plumber [4.62 h]; Operator [4.62 h]; Surveyor [4.62 h]; Surveyor Helper [4.62 h]; Mobile Crane [4.74 h]; 1.51m - 2.5m [56.5] | 92,664.9 |  | 0.0726138644689961 | Cons. | Z2 | Storm | Cons | CS.UNSC | GRPs | SUB.C | Commrce | Strm |
| B6.33 42 11.13.245_R |  | Embedment & Test(Rem) | 2.84d | 2026-10-21 | 2026-10-24 | B6.33 42 11.13.235_R FF, B6.33 42 11.13.245 |  |  |  |  | 105.48d | 0d | Labor [18.5 h]; Foreman [9.25 h]; Plumber Helper [9.25 h]; Plumber [9.25 h]; Operator [18.5 h]; Surveyor [9.25 h]; Surveyor Helper [9.25 h]; Loader [9.49 h]; Water Tanker [9.49 h]; Dump Truck [9.49 h]; Plate Compactor [9.49 h]; Roller Compactor [9.49 h]; 1.51m - 2.5m [25.11] | 41,185.06 |  | 0.0322733482772296 | Cons. | Z2 | Storm | Cons | CS.UNSC | GRPs | SUB.C | Commrce | Strm |
|  | ?1500 | **?1500** |  | 2026-02-23 | 2026-10-24 |  |  |  |  |  |  |  |  |  |  |  |  |  |  |  |  |  |  |  |  |
|  | 3 | **Depth From 0.0m to 1.5m** |  | 2026-04-07 | 2026-10-24 |  |  |  |  |  |  |  |  |  |  |  |  |  |  |  |  |  |  |  |  |
| B6.33 42 11.361520 |  | Excavation (59.28% Completed) | 135d | 2026-04-07 A | 2026-09-15 A | B6.33 42 11.361470 SS | 100% |  |  |  |  |  | Labor [18.49 h]; Foreman [9.24 h]; Operator [18.49 h]; Surveyor [9.24 h]; Surveyor Helper [9.24 h]; Excavator (With Bucket) [9.48 h]; Water Tanker [9.48 h]; Dump Truck [9.48 h]; Plate Compactor [9.48 h]; less than 1.5 |  |  | 0.000699802937699499 | Cons. | Z2 | Storm | Cons | CS.UNSC | GRPs | SUB.C | Commrce | Strm |
| B6.33 42 11.361530 |  | Sand Bedding (59.28% Completed) | 132d | 2026-04-11 A | 2026-09-15 A | B6.33 42 11.361520 FF | 100% |  |  |  |  |  | Labor [18.49 h]; Foreman [9.24 h]; Operator [36.97 h]; Surveyor [9.24 h]; Surveyor Helper [9.24 h]; Loader [9.48 h]; Water Tanker [9.48 h]; Dump Truck [9.48 h]; Plate Compactor [9.48 h]; less than 1.5 |  |  | 0.000177561484373346 | Cons. | Z2 | Storm | Cons | CS.UNSC | GRPs | SUB.C | Commrce | Strm |
| B6.33 42 11.361540 |  | Pipe Laying (59.28% Completed) | 130d | 2026-04-13 A | 2026-09-15 A | B6.33 42 11.361530 FF | 100% |  |  |  |  |  | Labor [18.49 h]; Foreman [9.24 h]; Plumber Helper [9.24 h]; Plumber [9.24 h]; Operator [9.24 h]; Surveyor [9.24 h]; Surveyor Helper [9.24 h]; Mobile Crane [9.48 h]; less than 1.5 |  |  | 0.00157716781481529 | Cons. | Z2 | Storm | Cons | CS.UNSC | GRPs | SUB.C | Commrce | Strm |
| B6.33 42 11.361550 |  | Embedment & Test (59.28% Completed) | 127d | 2026-04-16 A | 2026-09-15 A | B6.33 42 11.361540 FF | 100% |  |  |  |  |  | Labor [27.73 h]; Foreman [13.86 h]; Plumber Helper [13.86 h]; Plumber [13.86 h]; Operator [27.73 h]; Surveyor [13.86 h]; Surveyor Helper [13.86 h]; Loader [14.23 h]; Water Tanker [14.23 h]; Dump Truck [14.23 h]; Plate Compactor [14.23 h]; Roller Compactor [14.23 h]; less than 1.5 |  |  | 0.000699802937699499 | Cons. | Z2 | Storm | Cons | CS.UNSC | GRPs | SUB.C | Commrce | Strm |
| B6.33 42 11.361560 |  | Backfilling & Warrning Tape (59.28% Completed) | 125d | 2026-04-19 A | 2026-09-15 A | B6.33 42 11.361550 FF, B6.33 42 11.13.155 SS | 100% |  |  |  |  |  | Labor [36.97 h]; Foreman [18.49 h]; Operator [73.95 h]; Surveyor [18.49 h]; Surveyor Helper [18.49 h]; Loader [18.97 h]; Water Tanker [18.97 h]; Dump Truck [18.97 h]; Plate Compactor [18.97 h]; Roller Compactor [18.97 h]; less than 1.5 |  |  | 0.000344679058866916 | Cons. | Z2 | Storm | Cons | CS.UNSC | GRPs | SUB.C | Commrce | Strm |
| B6.33 42 11.361520_R |  | Excavation(Rem) | 2.28d | 2026-10-21 | 2026-10-24 | B6.33 42 11.361470_R SS, B6.33 42 11.361520 |  |  |  |  | 111.04d | 0d | Labor [12.7 h]; Foreman [6.35 h]; Operator [12.7 h]; Surveyor [6.35 h]; Surveyor Helper [6.35 h]; Excavator (With Bucket) [6.52 h]; Water Tanker [6.52 h]; Dump Truck [6.52 h]; Plate Compactor [6.52 h]; less than 1.5 |  |  | 0.000699802937699499 | Cons. | Z2 | Storm | Cons | CS.UNSC | GRPs | SUB.C | Commrce | Strm |
| B6.33 42 11.361530_R |  | Sand Bedding(Rem) | 2.28d | 2026-10-21 | 2026-10-24 | B6.33 42 11.361520_R FF, B6.33 42 11.361530 |  |  |  |  | 111.04d | 0d | Labor [12.7 h]; Foreman [6.35 h]; Operator [25.4 h]; Surveyor [6.35 h]; Surveyor Helper [6.35 h]; Loader [6.52 h]; Water Tanker [6.52 h]; Dump Truck [6.52 h]; Plate Compactor [6.52 h]; less than 1.5 |  |  | 0.000177561484373346 | Cons. | Z2 | Storm | Cons | CS.UNSC | GRPs | SUB.C | Commrce | Strm |
| B6.33 42 11.361540_R |  | Pipe Laying(Rem) | 2.28d | 2026-10-21 | 2026-10-24 | B6.33 42 11.361530_R FF, B6.33 42 11.361540 |  |  |  |  | 111.04d | 0.28d | Labor [12.7 h]; Foreman [6.35 h]; Plumber Helper [6.35 h]; Plumber [6.35 h]; Operator [6.35 h]; Surveyor [6.35 h]; Surveyor Helper [6.35 h]; Mobile Crane [6.52 h]; less than 1.5 |  |  | 0.00157716781481529 | Cons. | Z2 | Storm | Cons | CS.UNSC | GRPs | SUB.C | Commrce | Strm |
| B6.33 42 11.361550_R |  | Embedment & Test(Rem) | 2.56d | 2026-10-21 | 2026-10-24 | B6.33 42 11.361540_R FF, B6.33 42 11.361550 |  |  |  |  | 110.76d | 0.28d | Labor [19.05 h]; Foreman [9.52 h]; Plumber Helper [9.52 h]; Plumber [9.52 h]; Operator [19.05 h]; Surveyor [9.52 h]; Surveyor Helper [9.52 h]; Loader [9.77 h]; Water Tanker [9.77 h]; Dump Truck [9.77 h]; Plate Compactor [9.77 h]; Roller Compactor [9.77 h]; less than 1.5 |  |  | 0.000699802937699499 | Cons. | Z2 | Storm | Cons | CS.UNSC | GRPs | SUB.C | Commrce | Strm |
| B6.33 42 11.361560_R |  | Backfilling & Warrning Tape(Rem) | 2.84d | 2026-10-21 | 2026-10-24 | B6.33 42 11.361550_R FF, B6.33 42 11.13.155_R SS, B6.33 42 11.361560 |  |  |  |  | 110.48d |  | Labor [25.4 h]; Foreman [12.7 h]; Operator [50.79 h]; Surveyor [12.7 h]; Surveyor Helper [12.7 h]; Loader [13.03 h]; Water Tanker [13.03 h]; Dump Truck [13.03 h]; Plate Compactor [13.03 h]; Roller Compactor [13.03 h]; less than 1.5 |  |  | 0.000344679058866916 | Cons. | Z2 | Storm | Cons | CS.UNSC | GRPs | SUB.C | Commrce | Strm |
|  | 4 | **Depth From 1.5m to 2.5m** |  | 2026-02-23 | 2026-03-10 |  |  |  |  |  |  |  |  |  |  |  |  |  |  |  |  |  |  |  |  |
| B6.33 42 11.13.265 |  | Excavation | 2d | 2026-02-23 A | 2026-02-26 A | B1.2.31 23 16.01.6 | 100% |  |  |  |  |  | Labor [28.35 h]; Foreman [14.17 h]; Operator [28.35 h]; Surveyor [14.17 h]; Surveyor Helper [14.17 h]; Excavator (With Bucket) [16 h]; Water Tanker [16 h]; Dump Truck [16 h]; Plate Compactor [16 h]; 1.51m - 2.5m [380.13] | 696,216.73 | 696,216.73 | 0.0839947683947913 | Cons. | Z2 | Storm | Cons | CS.UNSC | GRPs | SUB.C | Commrce | Strm |
| B6.33 42 11.13.275 |  | Sand Bedding | 0.75d | 2026-02-28 A | 2026-03-01 A | B6.33 42 11.13.265 | 100% |  |  |  |  |  | Labor [28.35 h]; Foreman [14.17 h]; Operator [56.7 h]; Surveyor [14.17 h]; Surveyor Helper [14.17 h]; Loader [16 h]; Water Tanker [16 h]; Dump Truck [16 h]; Plate Compactor [16 h]; 1.51m - 2.5m [95.76] | 175,394.02 | 175,394.02 | 0.0211598309330443 | Cons. | Z2 | Storm | Cons | CS.UNSC | GRPs | SUB.C | Commrce | Strm |
| B6.33 42 11.13.285 |  | Pipe Laying | 1.5d | 2026-03-02 A | 2026-03-04 A | B6.33 42 11.13.275, DMM2-Proc-Delv-5728 | 100% |  |  |  |  |  | Labor; Foreman; Plumber Helper; Plumber; Operator; Surveyor; Surveyor Helper; Mobile Crane; 1.51m - 2.5m |  |  | 0.188946793178864 | Cons. | Z2 | Storm | Cons | CS.UNSC | GRPs | SUB.C | Commrce | Strm |
| B6.33 42 11.13.295 |  | Embedment & Test | 0.75d | 2026-03-04 A | 2026-03-05 A | B6.33 42 11.13.285 | 100% |  |  |  |  |  | Labor [56.7 h]; Foreman [28.35 h]; Plumber Helper [28.35 h]; Plumber [28.35 h]; Operator [56.7 h]; Surveyor [28.35 h]; Surveyor Helper [28.35 h]; Loader [32 h]; Water Tanker [32 h]; Dump Truck [32 h]; Plate Compactor [32 h]; Roller Compactor [32 h]; 1.51m - 2.5m [380.04] | 696,050.3 | 696,050.3 | 0.0839763525239398 | Cons. | Z2 | Storm | Cons | CS.UNSC | GRPs | SUB.C | Commrce | Strm |
| B6.33 42 11.13.305 |  | Backfilling & Warrning Tape | 1.5d | 2026-03-08 A | 2026-03-10 A | B6.33 42 11.13.295 | 100% |  |  |  |  |  | Labor [70.87 h]; Foreman [35.44 h]; Operator [141.75 h]; Surveyor [35.44 h]; Surveyor Helper [35.44 h]; Loader [40 h]; Water Tanker [40 h]; Dump Truck [40 h]; Plate Compactor [40 h]; Roller Compactor [40 h]; 1.51m - 2.5m [190.02] | 348,025.15 | 348,025.15 | 0.0419881762619698 | Cons. | Z2 | Storm | Cons | CS.UNSC | GRPs | SUB.C | Commrce | Strm |

| ID | WBS | Activity | Duration | Start | Finish | Predecessors | Complete | Remaining | Planned start | Planned finish | Total float | Free float | Resources | Cost | Actual cost | Weight % | DMM2 Weekly Progress | DMM2 Zones | Networks & Stations | DMM2 Phases | UNASCO | Networks Components | Subcontractors works | Dmm2 Roads | Yellow Sheet |
| --- | --- | --- | --- | --- | --- | --- | --- | --- | --- | --- | --- | --- | --- | --- | --- | --- | --- | --- | --- | --- | --- | --- | --- | --- | --- |
|  | Catch Basins | **Catch Basins** |  | 2026-06-06 | 2026-10-28 |  |  |  |  |  |  |  |  |  |  |  |  |  |  |  |  |  |  |  |  |
|  | Sing | **Single** |  | 2026-06-06 | 2026-10-05 |  |  |  |  |  |  |  |  |  |  |  |  |  |  |  |  |  |  |  |  |
| B6.33 05 40.01.130 |  | Excavation, Compaction & Vapour Barrier (75.00% Completed) | 87.84d | 2026-06-06 A | 2026-09-15 A | B6.33 42 11.361370 SS | 100% |  |  |  |  |  | Labor [23.39 h]; Foreman [11.69 h]; Operator [23.39 h]; Surveyor [11.69 h]; Surveyor Helper [11.69 h]; Excavator (With Bucket) [12 h]; Water Tanker [12 h]; Dump Truck [12 h]; Roller Compactor [12 h]; Single Catch basin [2.23] | 10,095.66 | 10,095.66 | 0.00295277448760277 | Cons. | Z2 | Storm | Cons | CS.UNSC | CBs | SUB.C | Commrce | Strm |
| B6.33 05 40.01.140 |  | Blinding Conc. (75.00% Completed) | 86.84d | 2026-06-07 A | 2026-09-15 A | B6.33 05 40.01.130 SS | 100% |  |  |  |  |  | Labor [23.39 h]; Foreman [11.69 h]; Laboratory Officer [11.69 h]; Carpenter [11.69 h]; Steelfixer [11.69 h]; Mason [11.69 h]; Single Catch basin [1.49] | 6,745.13 | 6,745.13 | 0.00197281439564727 | Cons. | Z2 | Storm | Cons | CS.UNSC | CBs | SUB.C | Commrce | Strm |
| B6.33 05 40.01.150 |  | Catch Basin Installation (75.00% Completed) | 83.84d | 2026-06-10 A | 2026-09-15 A | B6.33 05 40.01.140 SS | 100% |  |  |  |  |  | Labor [35.08 h]; Foreman [17.54 h]; Carpenter [17.54 h]; Steelfixer [17.54 h]; Mason [17.54 h]; Operator [35.08 h]; Surveyor [17.54 h]; Surveyor Helper [17.54 h]; Boom Truck [18 h]; Single Catch basin [6.7] | 30,286.98 | 30,286.98 | 0.00885832346280832 | Cons. | Z2 | Storm | Cons | CS.UNSC | CBs | SUB.C | Commrce | Strm |
| B6.33 05 40.01.160 |  | Backfilling, DI Frame & Grate Cover Fixing (75.00% Completed) | 75.84d | 2026-06-20 A | 2026-09-15 A | B6.33 42 11.35-12 SS, B6.33 05 39.01.2967 SS | 100% |  |  |  |  |  | Labor [46.78 h]; Foreman [23.39 h]; Operator [46.78 h]; Surveyor [23.39 h]; Surveyor Helper [23.39 h]; Loader [24 h]; Water Tanker [24 h]; Dump Truck [24 h]; Plate Compactor [24 h]; Single Catch basin [4.47] | 20,191.32 | 20,191.32 | 0.00590554897520555 | Cons. | Z2 | Storm | Cons | CS.UNSC | CBs | SUB.C | Commrce | Strm |
| B6.33 05 40.01.130_R |  | Excavation, Compaction & Vapour Barrier(Rem) | 2d | 2026-09-17 A | 2026-09-17 A | B6.33 42 11.361370_R SS, B6.33 05 40.01.130 | 100% |  | 2026-09-16 | 2026-09-17 |  |  | Labor [7.8 h]; Foreman [3.9 h]; Operator [7.8 h]; Surveyor [3.9 h]; Surveyor Helper [3.9 h]; Excavator (With Bucket) [4 h]; Water Tanker [4 h]; Dump Truck [4 h]; Roller Compactor [4 h]; Single Catch basin [0.74] | 3,365.22 |  | 0.00295277448760277 | Cons. | Z2 | Storm | Cons | CS.UNSC | CBs | SUB.C | Commrce | Strm |
| B6.33 05 40.01.140_R |  | Blinding Conc.(Rem) | 2d | 2026-09-19 A | 2026-09-27 A | B6.33 05 40.01.130_R SS, B6.33 05 40.01.140 | 100% |  | 2026-09-16 | 2026-09-17 |  |  | Labor [7.8 h]; Foreman [3.9 h]; Laboratory Officer [3.9 h]; Carpenter [3.9 h]; Steelfixer [3.9 h]; Mason [3.9 h]; Single Catch basin [0.5] | 2,248.38 | 2,248.38 | 0.00197281439564727 | Cons. | Z2 | Storm | Cons | CS.UNSC | CBs | SUB.C | Commrce | Strm |
| B6.33 05 40.01.150_R |  | Catch Basin Installation(Rem) | 2d | 2026-09-27 A | 2026-09-30 A | B6.33 05 40.01.140_R SS, B6.33 05 40.01.150 | 100% |  | 2026-09-16 | 2026-09-17 |  |  | Labor [11.69 h]; Foreman [5.85 h]; Carpenter [5.85 h]; Steelfixer [5.85 h]; Mason [5.85 h]; Operator [11.69 h]; Surveyor [5.85 h]; Surveyor Helper [5.85 h]; Boom Truck [6 h]; Single Catch basin [2.23] | 10,095.66 | 10,095.66 | 0.00885832346280832 | Cons. | Z2 | Storm | Cons | CS.UNSC | CBs | SUB.C | Commrce | Strm |
| B6.33 05 40.01.160_R |  | Backfilling, DI Frame & Grate Cover Fixing(Rem) | 2d | 2026-10-03 A | 2026-10-05 A | B6.33 42 11.35-12_R SS, B6.33 05 39.01.2967_R SS, B6.33 05 40.01.160 | 100% |  | 2026-09-19 | 2026-09-21 |  |  | Labor [15.59 h]; Foreman [7.8 h]; Operator [15.59 h]; Surveyor [7.8 h]; Surveyor Helper [7.8 h]; Loader [8 h]; Water Tanker [8 h]; Dump Truck [8 h]; Plate Compactor [8 h]; Single Catch basin [1.49] | 6,730.44 | 6,730.44 | 0.00590554897520555 | Cons. | Z2 | Storm | Cons | CS.UNSC | CBs | SUB.C | Commrce | Strm |
|  | Dou | **Double** |  | 2026-09-19 | 2026-10-28 |  |  |  |  |  |  |  |  |  |  |  |  |  |  |  |  |  |  |  |  |
| B6.33 05 40.01.690 |  | Excavation, Compaction & Vapour Barrier | 3d | 2026-09-19 A | 2026-09-21 A | B6.33 05 40.01.130_R | 100% |  |  |  |  |  | Labor [31.18 h]; Foreman [15.59 h]; Operator [31.18 h]; Surveyor [15.59 h]; Surveyor Helper [15.59 h]; Excavator (With Bucket) [16 h]; Water Tanker [16 h]; Dump Truck [16 h]; Roller Compactor [16 h]; Double Catch basin [0.6] | 5,258.04 | 5,258.04 | 0.000879450288447266 | Cons. | Z2 | Storm | Cons | CS.UNSC | CBs | SUB.C | Commrce | Strm |
| B6.33 05 40.01.700 |  | Blinding Conc. | 3d | 2026-10-21 | 2026-10-24 | B6.33 05 40.01.690 |  |  |  |  | 106.32d | 0d | Labor [31.18 h]; Foreman [15.59 h]; Laboratory Officer [15.59 h]; Carpenter [15.59 h]; Steelfixer [15.59 h]; Mason [15.59 h]; Double Catch basin [0.39] | 3,455.28 |  | 0.000577924475265344 | Cons. | Z2 | Storm | Cons | CS.UNSC | CBs | SUB.C | Commrce | Strm |
| B6.33 05 40.01.720 |  | Backfilling, DI Frame & Grate Cover Fixing | 6d | 2026-10-21 | 2026-10-28 | B6.33 42 11.36-12_R |  |  |  |  | 106.5d |  | Labor [77.96 h]; Foreman [38.98 h]; Operator [77.96 h]; Surveyor [38.98 h]; Surveyor Helper [38.98 h]; Loader [40 h]; Water Tanker [40 h]; Dump Truck [40 h]; Plate Compactor [40 h]; Double Catch basin [1.19] | 10,516.1 |  | 0.00175890508448974 | Cons. | Z2 | Storm | Cons | CS.UNSC | CBs | SUB.C | Commrce | Strm |
| B6.33 05 40.01.710 |  | Catch Basin Installation | 4d | 2026-10-25 | 2026-10-28 | B6.33 05 40.01.700 |  |  |  |  | 106.32d | 0d | Labor [46.78 h]; Foreman [23.39 h]; Carpenter [23.39 h]; Steelfixer [23.39 h]; Mason [23.39 h]; Operator [46.78 h]; Surveyor [23.39 h]; Surveyor Helper [23.39 h]; Boom Truck [24 h]; Double Catch basin [1.81] | 15,924.38 |  | 0.00266348484222734 | Cons. | Z2 | Storm | Cons | CS.UNSC | CBs | SUB.C | Commrce | Strm |
|  | UPVC | **UPVC** |  | 2026-06-07 | 2026-10-28 |  |  |  |  |  |  |  |  |  |  |  |  |  |  |  |  |  |  |  |  |
|  | UPVC300 | **?300 From 0.0 to 1.5m** |  | 2026-06-07 | 2026-10-21 |  |  |  |  |  |  |  |  |  |  |  |  |  |  |  |  |  |  |  |  |
| B6.33 42 11.35-11 |  | Catch Basin Opening Prep. (68.04% Completed) | 86.84d | 2026-06-07 A | 2026-09-15 A | B6.33 05 40.01.150 SS+1d | 100% |  |  |  |  |  | Labor [21.22 h]; Foreman [10.61 h]; Plumber Helper [10.61 h]; Plumber [10.61 h]; less than 1.5 [31.72] | 19,075.67 | 19,075.67 | 0.0150835855285905 | Cons. | Z2 | Storm | Cons | CS.UNSC | UPVC | SUB.C | Commrce | Strm |
| B6.33 42 11.35-12 |  | Fittings & Pipe Installation (68.04% Completed) | 86.84d | 2026-06-07 A | 2026-09-15 A | B6.33 42 11.35-11 SS | 100% |  |  |  |  |  | Labor [21.22 h]; Foreman [10.61 h]; Plumber Helper [10.61 h]; Plumber [10.61 h]; Surveyor [10.61 h]; Surveyor Helper [10.61 h]; less than 1.5 [126.87] | 76,302.67 | 76,302.67 | 0.0603343421083148 | Cons. | Z2 | Storm | Cons | CS.UNSC | UPVC | SUB.C | Commrce | Strm |
| B6.33 42 11.35-11_R |  | Catch Basin Opening Prep.(Rem) | 2.09d | 2026-10-07 A | 2026-10-21 | B6.33 05 40.01.150_R SS, B6.33 42 11.35-11 | 59% | 0.86d | 2026-10-07 | 2026-10-10 | 112.46d |  | Labor [9.97 h]; Foreman [4.98 h]; Plumber Helper [4.98 h]; Plumber [4.98 h]; less than 1.5 [14.9] | 8,960.29 | 5,286.57 | 0.0150835855285905 | Cons. | Z2 | Storm | Cons | CS.UNSC | UPVC | SUB.C | Commrce | Strm |
| B6.33 42 11.35-12_R |  | Fittings & Pipe Installation(Rem) | 2.09d | 2026-10-07 A | 2026-10-21 | B6.33 42 11.35-11_R SS, B6.33 42 11.35-12 | 59% | 0.86d | 2026-10-07 | 2026-10-10 | 112.46d |  | Labor [9.97 h]; Foreman [4.98 h]; Plumber Helper [4.98 h]; Plumber [4.98 h]; Surveyor [4.98 h]; Surveyor Helper [4.98 h]; less than 1.5 [59.59] | 35,841.17 | 21,146.29 | 0.0603343421083148 | Cons. | Z2 | Storm | Cons | CS.UNSC | UPVC | SUB.C | Commrce | Strm |
|  | UPVC3001 | **?400 From 0.0 to 1.5m** |  | 2026-06-07 | 2026-10-28 |  |  |  |  |  |  |  |  |  |  |  |  |  |  |  |  |  |  |  |  |
| B6.33 42 11.36-11 |  | Catch Basin Opening Prep. (68.04% Completed) | 86.84d | 2026-06-07 A | 2026-09-15 A | B6.33 05 40.01.150 FF+1d | 100% |  |  |  |  |  | Labor [21.22 h]; Foreman [10.61 h]; Plumber Helper [10.61 h]; Plumber [10.61 h]; less than 1.5 [8.57] | 5,148.55 | 5,148.55 | 0.00437794245014235 | Cons. | Z2 | Storm | Cons | CS.UNSC | UPVC | SUB.C | Commrce | Strm |
| B6.33 42 11.36-12 |  | Fittings & Pipe Installation (68.04% Completed) | 86.84d | 2026-06-07 A | 2026-09-15 A | B6.33 42 11.36-11 SS | 100% |  |  |  |  |  | Labor [21.22 h]; Foreman [10.61 h]; Plumber Helper [10.61 h]; Plumber [10.61 h]; Surveyor [10.61 h]; Surveyor Helper [10.61 h]; less than 1.5 [34.29] | 20,594.21 | 20,594.21 | 0.0175117698005694 | Cons. | Z2 | Storm | Cons | CS.UNSC | UPVC | SUB.C | Commrce | Strm |
| B6.33 42 11.36-11_R |  | Catch Basin Opening Prep.(Rem) | 2d | 2026-10-08 A | 2026-10-28 | B6.33 05 40.01.710 FF, B6.33 42 11.36-11 | 59% | 0.82d | 2026-10-13 | 2026-10-14 | 106.32d |  | Labor [9.97 h]; Foreman [4.98 h]; Plumber Helper [4.98 h]; Plumber [4.98 h]; less than 1.5 [4.03] | 2,418.4 | 1,426.85 | 0.00437794245014235 | Cons. | Z2 | Storm | Cons | CS.UNSC | UPVC | SUB.C | Commrce | Strm |
| B6.33 42 11.36-12_R |  | Fittings & Pipe Installation(Rem) | 2d | 2026-10-10 A | 2026-10-21 | B6.33 42 11.36-11_R SS, B6.33 42 11.36-12 | 59% | 0.82d | 2026-10-13 | 2026-10-14 | 106.5d | 0d | Labor [9.97 h]; Foreman [4.98 h]; Plumber Helper [4.98 h]; Plumber [4.98 h]; Surveyor [4.98 h]; Surveyor Helper [4.98 h]; less than 1.5 [16.11] | 9,673.59 | 5,707.42 | 0.0175117698005694 | Cons. | Z2 | Storm | Cons | CS.UNSC | UPVC | SUB.C | Commrce | Strm |

| ID | WBS | Activity | Duration | Start | Finish | Predecessors | Complete | Planned start | Planned finish | Total float | Free float | Resources | Cost | Actual cost | Weight % | DMM2 Weekly Progress | DMM2 Zones | Networks & Stations | DMM2 Phases | UNASCO | Networks Components | Subcontractors works | Dmm2 Roads | Yellow Sheet |
| --- | --- | --- | --- | --- | --- | --- | --- | --- | --- | --- | --- | --- | --- | --- | --- | --- | --- | --- | --- | --- | --- | --- | --- | --- |
|  | Potable Water | **Potable Water Network** |  | 2026-04-03 | 2026-11-21 |  |  |  |  |  |  |  |  |  |  |  |  |  |  |  |  |  |  |  |
|  | HDPE | **HDPE Pipes** |  | 2026-04-03 | 2026-11-03 |  |  |  |  |  |  |  |  |  |  |  |  |  |  |  |  |  |  |  |
|  | ?110mm | **?110mm** |  | 2026-04-03 | 2026-11-03 |  |  |  |  |  |  |  |  |  |  |  |  |  |  |  |  |  |  |  |
|  | Depth: 0.0m - 1.5m | **Depth: 0.0m - 1.5m** |  | 2026-04-20 | 2026-10-24 |  |  |  |  |  |  |  |  |  |  |  |  |  |  |  |  |  |  |  |
| B3.33 14 13.01.01.2 |  | Sand Bedding (75.10% Completed) | 124d | 2026-04-20 A | 2026-09-15 A | B3.33 14 13.01.01.1 FF | 100% |  |  |  |  | Labor [23.42 h]; Foreman [11.71 h]; Operator [46.84 h]; Surveyor [11.71 h]; Surveyor Helper [11.71 h]; Loader [12.02 h]; Water Tanker [12.02 h]; Dump Truck [12.02 h]; Plate Compactor [12.02 h]; Depth: 0.0m - 1.5m [29.25] | 4,211.31 | 4,211.31 | 0.00112426239033505 | Cons. | Z2 | Potable | Cons | CS.UNSC | HDPEs | SUB.C | Commrce | Pot |
| B3.33 14 13.01.01.3 |  | Pipe Laying (72.50% Completed) | 121d | 2026-04-23 A | 2026-09-15 A | B3.33 14 13.01.01.2 FF | 100% |  |  |  |  | Labor [22.61 h]; Foreman [11.3 h]; Plumber Helper [11.3 h]; Plumber [11.3 h]; Operator [11.3 h]; Surveyor [11.3 h]; Surveyor Helper [11.3 h]; Mobile Crane [11.6 h]; Depth: 0.0m - 1.5m [254.06] | 36,581.92 | 36,581.92 | 0.0101167184550828 | Cons. | Z2 | Potable | Cons | CS.UNSC | HDPEs | SUB.C | Commrce | Pot |
| B3.33 14 13.01.01.4 |  | Embedment & Test (72.50% Completed) | 120d | 2026-04-25 A | 2026-09-15 A | B3.33 14 13.01.01.3 FF | 100% |  |  |  |  | Labor [45.22 h]; Foreman [22.61 h]; Plumber Helper [22.61 h]; Plumber [22.61 h]; Operator [45.22 h]; Surveyor [22.61 h]; Surveyor Helper [22.61 h]; Loader [23.2 h]; Water Tanker [23.2 h]; Dump Truck [23.2 h]; Plate Compactor [23.2 h]; Roller Compactor [23.2 h]; Depth: 0.0m - 1.5m [112.91] | 16,258.3 | 16,258.3 | 0.00449622803237392 | Cons. | Z2 | Potable | Cons | CS.UNSC | HDPEs | SUB.C | Commrce | Pot |
| B3.33 14 13.01.01.5 |  | Backfilling & Warrning Tape (72.50% Completed) | 113d | 2026-05-03 A | 2026-09-15 A | B3.33 14 13.01.01.4 FF | 100% |  |  |  |  | Labor [56.52 h]; Foreman [28.26 h]; Operator [113.04 h]; Surveyor [28.26 h]; Surveyor Helper [28.26 h]; Loader [29 h]; Water Tanker [29 h]; Dump Truck [29 h]; Plate Compactor [29 h]; Roller Compactor [29 h]; Depth: 0.0m - 1.5m [56.46] | 8,129.15 | 8,129.15 | 0.00224811401618696 | Cons. | Z2 | Potable | Cons | CS.UNSC | HDPEs | SUB.C | Commrce | Pot |
| B3.33 14 13.01.01.1 |  | Excavation (72.50% Completed) | 100d | 2026-05-18 A | 2026-09-15 A | B6.33 42 11.361220 SS | 100% |  |  |  |  | Labor [22.61 h]; Foreman [11.3 h]; Operator [22.61 h]; Surveyor [11.3 h]; Surveyor Helper [11.3 h]; Excavator (With Bucket) [11.6 h]; Water Tanker [11.6 h]; Dump Truck [11.6 h]; Plate Compactor [11.6 h]; Depth: 0.0m - 1.5m [112.91] | 16,258.3 | 16,258.3 | 0.00449622803237392 | Cons. | Z2 | Potable | Cons | CS.UNSC | HDPEs | SUB.C | Commrce | Pot |
| B3.33 14 13.01.01.1_R |  | Excavation(Rem) | 3d | 2026-10-21 | 2026-10-24 | B6.33 42 11.361220_R SS, B3.33 14 13.01.01.1 |  |  |  | 42.32d | 0d | Labor [8.58 h]; Foreman [4.29 h]; Operator [8.58 h]; Surveyor [4.29 h]; Surveyor Helper [4.29 h]; Excavator (With Bucket) [4.4 h]; Water Tanker [4.4 h]; Dump Truck [4.4 h]; Plate Compactor [4.4 h]; Depth: 0.0m - 1.5m [42.84] | 6,168.01 |  | 0.00449622803237392 | Cons. | Z2 | Potable | Cons | CS.UNSC | HDPEs | SUB.C | Commrce | Pot |
| B3.33 14 13.01.01.2_R |  | Sand Bedding(Rem) | 3d | 2026-10-21 | 2026-10-24 | B3.33 14 13.01.01.1_R FF, B3.33 14 13.01.01.2 |  |  |  | 93.52d | 0d | Labor [7.76 h]; Foreman [3.88 h]; Operator [15.53 h]; Surveyor [3.88 h]; Surveyor Helper [3.88 h]; Loader [3.98 h]; Water Tanker [3.98 h]; Dump Truck [3.98 h]; Plate Compactor [3.98 h]; Depth: 0.0m - 1.5m [9.7] | 1,396.29 |  | 0.00112426239033505 | Cons. | Z2 | Potable | Cons | CS.UNSC | HDPEs | SUB.C | Commrce | Pot |
| B3.33 14 13.01.01.3_R |  | Pipe Laying(Rem) | 3d | 2026-10-21 | 2026-10-24 | B3.33 14 13.01.01.2_R FF, B3.33 14 13.01.01.3 |  |  |  | 93.52d | 0d | Labor [8.58 h]; Foreman [4.29 h]; Plumber Helper [4.29 h]; Plumber [4.29 h]; Operator [4.29 h]; Surveyor [4.29 h]; Surveyor Helper [4.29 h]; Mobile Crane [4.4 h]; Depth: 0.0m - 1.5m [96.38] | 13,878.31 |  | 0.0101167184550828 | Cons. | Z2 | Potable | Cons | CS.UNSC | HDPEs | SUB.C | Commrce | Pot |
| B3.33 14 13.01.01.5_R |  | Backfilling & Warrning Tape(Rem) | 2.38d | 2026-10-21 | 2026-10-24 | B3.33 14 13.01.01.4_R FF, B3.33 14 13.01.01.5 |  |  |  | 93.52d | 0d | Labor [21.44 h]; Foreman [10.72 h]; Operator [42.88 h]; Surveyor [10.72 h]; Surveyor Helper [10.72 h]; Loader [11 h]; Water Tanker [11 h]; Dump Truck [11 h]; Plate Compactor [11 h]; Roller Compactor [11 h]; Depth: 0.0m - 1.5m [21.42] | 3,084.01 |  | 0.00224811401618696 | Cons. | Z2 | Potable | Cons | CS.UNSC | HDPEs | SUB.C | Commrce | Pot |
| B3.33 14 13.01.01.4_R |  | Embedment & Test(Rem) | 2.1d | 2026-10-21 | 2026-10-24 | B3.33 14 13.01.01.3_R FF, B3.33 14 13.01.01.4 |  |  |  | 93.52d | 0d | Labor [17.15 h]; Foreman [8.58 h]; Plumber Helper [8.58 h]; Plumber [8.58 h]; Operator [17.15 h]; Surveyor [8.58 h]; Surveyor Helper [8.58 h]; Loader [8.8 h]; Water Tanker [8.8 h]; Dump Truck [8.8 h]; Plate Compactor [8.8 h]; Roller Compactor [8.8 h]; Depth: 0.0m - 1.5m [42.84] | 6,168.01 |  | 0.00449622803237392 | Cons. | Z2 | Potable | Cons | CS.UNSC | HDPEs | SUB.C | Commrce | Pot |
|  | Depth: 1.51m - 2.5m | **Depth: 1.51m - 2.5m** |  | 2026-04-03 | 2026-11-03 |  |  |  |  |  |  |  |  |  |  |  |  |  |  |  |  |  |  |  |
| B3.33 14 13.01.02.4 |  | Embedment & Test (81.66% Completed) | 138d | 2026-04-03 A | 2026-09-15 A | B3.33 14 13.01.02.3 FF, B3.33 14 19.01.106 SS | 100% | 2026-04-04 | 2026-09-15 |  |  | Labor [50.93 h]; Foreman [25.47 h]; Plumber Helper [25.47 h]; Plumber [25.47 h]; Operator [50.93 h]; Surveyor [25.47 h]; Surveyor Helper [25.47 h]; Loader [26.13 h]; Water Tanker [26.13 h]; Dump Truck [26.13 h]; Plate Compactor [26.13 h]; Roller Compactor [26.13 h]; Depth: 1.51m - 2.5m |  |  | 0.000145557831170628 | Cons. | Z2 | Potable | Cons | CS.UNSC | HDPEs | SUB.C | Commrce | Pot |
| B3.33 14 13.01.02.5 |  | Backfilling & Warrning Tape (81.66% Completed) | 134d | 2026-04-08 A | 2026-09-15 A | B3.33 14 13.01.02.4 FF | 100% |  |  |  |  | Labor [63.66 h]; Foreman [31.83 h]; Operator [127.33 h]; Surveyor [31.83 h]; Surveyor Helper [31.83 h]; Loader [32.66 h]; Water Tanker [32.66 h]; Dump Truck [32.66 h]; Plate Compactor [32.66 h]; Roller Compactor [32.66 h]; Depth: 1.51m - 2.5m |  |  | 7.27789155853129E-005 | Cons. | Z2 | Potable | Cons | CS.UNSC | HDPEs | SUB.C | Commrce | Pot |
| B3.33 14 13.01.02.1 |  | Excavation (81.66% Completed) | 124d | 2026-04-20 A | 2026-09-15 A | B3.33 14 13.01.01.1 SS | 100% |  |  |  |  | Labor [25.47 h]; Foreman [12.73 h]; Operator [25.47 h]; Surveyor [12.73 h]; Surveyor Helper [12.73 h]; Excavator (With Bucket) [13.07 h]; Water Tanker [13.07 h]; Dump Truck [13.07 h]; Plate Compactor [13.07 h]; Depth: 1.51m - 2.5m |  |  | 0.000145557831170628 | Cons. | Z2 | Potable | Cons | CS.UNSC | HDPEs | SUB.C | Commrce | Pot |
| B3.33 14 13.01.02.2 |  | Sand Bedding (81.66% Completed) | 121d | 2026-04-23 A | 2026-09-15 A | B3.33 14 13.01.02.1 FF | 100% |  |  |  |  | Labor [25.47 h]; Foreman [12.73 h]; Operator [50.93 h]; Surveyor [12.73 h]; Surveyor Helper [12.73 h]; Loader [13.07 h]; Water Tanker [13.07 h]; Dump Truck [13.07 h]; Plate Compactor [13.07 h]; Depth: 1.51m - 2.5m |  |  | 3.61452332437126E-005 | Cons. | Z2 | Potable | Cons | CS.UNSC | HDPEs | SUB.C | Commrce | Pot |
| B3.33 14 13.01.02.3 |  | Pipe Laying (81.66% Completed) | 120d | 2026-04-25 A | 2026-09-15 A | B3.33 14 13.01.02.2 FF | 100% |  |  |  |  | Labor [25.47 h]; Foreman [12.73 h]; Plumber Helper [12.73 h]; Plumber [12.73 h]; Operator [12.73 h]; Surveyor [12.73 h]; Surveyor Helper [12.73 h]; Mobile Crane [13.07 h]; Depth: 1.51m - 2.5m |  |  | 0.000327260895584966 | Cons. | Z2 | Potable | Cons | CS.UNSC | HDPEs | SUB.C | Commrce | Pot |
| B3.33 14 13.01.02.1_R |  | Excavation(Rem) | 3d | 2026-10-21 | 2026-10-24 | B3.33 14 13.01.01.1_R SS, B3.33 14 13.01.02.1 |  |  |  | 42.32d | 0d | Labor [5.72 h]; Foreman [2.86 h]; Operator [5.72 h]; Surveyor [2.86 h]; Surveyor Helper [2.86 h]; Excavator (With Bucket) [2.93 h]; Water Tanker [2.93 h]; Dump Truck [2.93 h]; Plate Compactor [2.93 h]; Depth: 1.51m - 2.5m |  |  | 0.000145557831170628 | Cons. | Z2 | Potable | Cons | CS.UNSC | HDPEs | SUB.C | Commrce | Pot |
| B3.33 14 13.01.02.2_R |  | Sand Bedding(Rem) | 3d | 2026-10-21 | 2026-10-24 | B3.33 14 13.01.02.1_R FF, B3.33 14 13.01.02.2 |  |  |  | 99.32d | 0d | Labor [5.72 h]; Foreman [2.86 h]; Operator [11.44 h]; Surveyor [2.86 h]; Surveyor Helper [2.86 h]; Loader [2.93 h]; Water Tanker [2.93 h]; Dump Truck [2.93 h]; Plate Compactor [2.93 h]; Depth: 1.51m - 2.5m |  |  | 3.61452332437126E-005 | Cons. | Z2 | Potable | Cons | CS.UNSC | HDPEs | SUB.C | Commrce | Pot |
| B3.33 14 13.01.02.3_R |  | Pipe Laying(Rem) | 3d | 2026-10-21 | 2026-10-24 | B3.33 14 13.01.02.2_R FF, B3.33 14 13.01.02.3 |  |  |  | 99.32d | 0d | Labor [5.72 h]; Foreman [2.86 h]; Plumber Helper [2.86 h]; Plumber [2.86 h]; Operator [2.86 h]; Surveyor [2.86 h]; Surveyor Helper [2.86 h]; Mobile Crane [2.93 h]; Depth: 1.51m - 2.5m |  |  | 0.000327260895584966 | Cons. | Z2 | Potable | Cons | CS.UNSC | HDPEs | SUB.C | Commrce | Pot |
| B3.33 14 13.01.02.4_R |  | Embedment & Test(Rem) | 3d | 2026-10-21 | 2026-10-24 | B3.33 14 13.01.02.3_R FF, B3.33 14 19.01.106_R SS, B3.33 14 13.01.02.4 |  |  |  | 102.32d | 8.8d | Labor [11.44 h]; Foreman [5.72 h]; Plumber Helper [5.72 h]; Plumber [5.72 h]; Operator [11.44 h]; Surveyor [5.72 h]; Surveyor Helper [5.72 h]; Loader [5.87 h]; Water Tanker [5.87 h]; Dump Truck [5.87 h]; Plate Compactor [5.87 h]; Roller Compactor [5.87 h]; Depth: 1.51m - 2.5m |  |  | 0.000145557831170628 | Cons. | Z2 | Potable | Cons | CS.UNSC | HDPEs | SUB.C | Commrce | Pot |
| B3.33 14 13.01.02.5_R |  | Backfilling & Warrning Tape(Rem) | 3d | 2026-10-31 | 2026-11-03 | B3.33 14 19.01.107 FF, B3.33 14 13.01.02.4_R FF, B3.33 14 13.01.02.5, B3.33 14 11.01.025_R |  |  |  | 93.52d | 10.2d | Labor [14.3 h]; Foreman [7.15 h]; Operator [28.6 h]; Surveyor [7.15 h]; Surveyor Helper [7.15 h]; Loader [7.34 h]; Water Tanker [7.34 h]; Dump Truck [7.34 h]; Plate Compactor [7.34 h]; Roller Compactor [7.34 h]; Depth: 1.51m - 2.5m |  |  | 7.27789155853129E-005 | Cons. | Z2 | Potable | Cons | CS.UNSC | HDPEs | SUB.C | Commrce | Pot |

| ID | WBS | Activity | Duration | Start | Finish | Predecessors | Complete | Planned start | Planned finish | Total float | Free float | Resources | Cost | Actual cost | Weight % | DMM2 Weekly Progress | DMM2 Zones | Networks & Stations | DMM2 Phases | UNASCO | Networks Components | Subcontractors works | Dmm2 Roads | Yellow Sheet |
| --- | --- | --- | --- | --- | --- | --- | --- | --- | --- | --- | --- | --- | --- | --- | --- | --- | --- | --- | --- | --- | --- | --- | --- | --- |
|  | Valves & Chambers | **Valves & Chambers** |  | 2026-05-01 | 2026-11-21 |  |  |  |  |  |  |  |  |  |  |  |  |  |  |  |  |  |  |  |
|  | GV | **Gate Valves** |  | 2026-05-01 | 2026-10-27 |  |  |  |  |  |  |  |  |  |  |  |  |  |  |  |  |  |  |  |
|  | 1 | **Gate valves dia (110) mm** |  | 2026-05-01 | 2026-10-27 |  |  |  |  |  |  |  |  |  |  |  |  |  |  |  |  |  |  |  |
| B3.33 14 19.01.106 |  | Burried Isolation Valve Installation (75.00% Completed) | 114d | 2026-05-01 A | 2026-09-15 A | B3.33 14 13.01.02.3 SS | 100% | 2026-05-02 | 2026-09-15 |  |  | Labor [23.39 h]; Plumber Helper [11.69 h]; Plumber [11.69 h]; Operator [23.39 h]; Boom Truck [12 h]; POT Gate V dia 110 mm [1.24] | 2,869.28 | 2,869.28 | 0.000737657950376926 | Cons. | Z2 | Potable | Cons | CS.UNSC | Val&Chs | SUB.C | Commrce | Pot |
| B3.33 14 19.01.106_R |  | Burried Isolation Valve Installation(Rem) | 3d | 2026-10-21 | 2026-10-24 | B3.33 14 13.01.02.3_R SS, B3.33 14 19.01.106 |  |  |  | 99.32d | 0d | Labor [7.8 h]; Plumber Helper [3.9 h]; Plumber [3.9 h]; Operator [7.8 h]; Boom Truck [4 h]; POT Gate V dia 110 mm [0.41] | 956.43 |  | 0.000737657950376926 | Cons. | Z2 | Potable | Cons | CS.UNSC | Val&Chs | SUB.C | Commrce | Pot |
| B3.33 14 19.01.107 |  | Spindle & Surface Box | 3d | 2026-10-25 | 2026-10-27 | B3.33 14 19.01.106_R |  |  |  | 99.32d | 5.8d | Labor [31.18 h]; Foreman [15.59 h]; Plumber Helper [15.59 h]; Plumber [15.59 h]; Operator [31.18 h]; JCB [16 h]; POT Gate V dia 110 mm [1.1] | 2,550.47 |  | 0.000491771966917951 | Cons. | Z2 | Potable | Cons | CS.UNSC | Val&Chs | SUB.C | Commrce | Pot |
|  | 2 | **Air Valves** |  | 2026-10-25 | 2026-11-17 |  |  |  |  |  |  |  |  |  |  |  |  |  |  |  |  |  |  |  |
|  | 4 | **Air valves on less than 315 mm. (In Chamber)** |  | 2026-10-25 | 2026-11-17 |  |  |  |  |  |  |  |  |  |  |  |  |  |  |  |  |  |  |  |
| B3.33 05 63.02.22 |  | Land Adjustment & Compaction | 3d | 2026-10-25 | 2026-10-27 | B3.33 14 13.01.02.1_R |  |  |  | 69.32d | 0d | Labor [31.18 h]; Foreman [15.59 h]; Operator [62.37 h]; Surveyor [15.59 h]; Surveyor Helper [15.59 h]; Excavator (With Bucket) [16 h]; Water Tanker [16 h]; Dump Truck [16 h]; Plate Compactor [16 h]; POT Air valve Dia. 50 mm on pipes with Dia. less than 315 mm [0.24]; Air valve chamber; on less than 315 mm Dia. pipeline [0.18] | 4,549.72 |  | 0.000888448059942745 | Cons. | Z2 | Potable | Cons | CS.UNSC | Val&Chs | SUB.C | Commrce | Pot |
| B3.33 05 63.02.20 |  | Foundations | 4d | 2026-10-28 | 2026-11-01 | B3.33 05 63.02.22 |  |  |  | 84.32d | 0d | Labor [46.78 h]; Foreman [23.39 h]; Laboratory Officer [23.39 h]; Carpenter [23.39 h]; Steelfixer [23.39 h]; Mason [23.39 h]; POT Air valve Dia. 50 mm on pipes with Dia. less than 315 mm [0.06]; Air valve chamber; on less than 315 mm Dia. pipeline [0.24] | 5,389.08 |  | 0.00105235404675599 | Cons. | Z2 | Potable | Cons | CS.UNSC | Val&Chs | SUB.C | Commrce | Pot |
| B3.33 05 63.02.23 |  | Chambers Walls Conc Cast In Situ | 4d | 2026-11-02 | 2026-11-05 | B3.33 05 63.02.20 |  |  |  | 84.32d | 0d | Labor [46.78 h]; Foreman [23.39 h]; Laboratory Officer [23.39 h]; Carpenter [23.39 h]; Steelfixer [23.39 h]; Mason [23.39 h]; POT Air valve Dia. 50 mm on pipes with Dia. less than 315 mm [0.52]; Air valve chamber; on less than 315 mm Dia. pipeline [0.24] | 6,600.26 |  | 0.00128886622145969 | Cons. | Z2 | Potable | Cons | CS.UNSC | Val&Chs | SUB.C | Commrce | Pot |
| B3.33 05 63.02.21 |  | Chamber Curing, Finishing & Steel Cover | 5d | 2026-11-07 | 2026-11-11 | B3.33 05 63.02.23 |  |  |  | 84.32d | 0d | Labor [62.37 h]; Mason [31.18 h]; POT Air valve Dia. 50 mm on pipes with Dia. less than 315 mm [0.24]; Air valve chamber; on less than 315 mm Dia. pipeline [0.18] | 4,549.72 |  | 0.000888448059942745 | Cons. | Z2 | Potable | Cons | CS.UNSC | Val&Chs | SUB.C | Commrce | Pot |
| B3.33 05 63.02.24 |  | Valve & Fitting Installation | 5d | 2026-11-12 | 2026-11-17 | B3.33 05 63.02.21 |  |  |  | 84.32d | 15d | Labor [62.37 h]; Plumber Helper [31.18 h]; Plumber [31.18 h]; Operator [62.37 h]; Boom Truck [32 h]; POT Air valve Dia. 50 mm on pipes with Dia. less than 315 mm [0.12]; Air valve chamber; on less than 315 mm Dia. pipeline [0.34] | 7,834.72 |  | 0.00152992514844024 | Cons. | Z2 | Potable | Cons | CS.UNSC | Val&Chs | SUB.C | Commrce | Pot |
|  | Washout Valves | **Washout Valves** |  | 2026-10-28 | 2026-11-21 |  |  |  |  |  |  |  |  |  |  |  |  |  |  |  |  |  |  |  |
|  | 4 | **Washout valves on 110-400 mm. (In Chamber)** |  | 2026-10-28 | 2026-11-21 |  |  |  |  |  |  |  |  |  |  |  |  |  |  |  |  |  |  |  |
| B3.33 05 63.01.17 |  | Land Adjustment & Compaction | 3d | 2026-10-28 | 2026-10-31 | B3.33 05 63.02.22 |  |  |  | 69.32d | 0d | Labor [31.18 h]; Foreman [15.59 h]; Operator [62.37 h]; Surveyor [15.59 h]; Surveyor Helper [15.59 h]; Excavator (With Bucket) [16 h]; Water Tanker [16 h]; Dump Truck [16 h]; Plate Compactor [16 h]; POT Wash out valve Dia. 100 mm on pipes with Dia. 110-400 mm [0.26]; Wash out valve chamber; on 110-400 mm Dia. pipeline [0.26] | 9,985.75 |  | 0.00162096886660874 | Cons. | Z2 | Potable | Cons | CS.UNSC | Val&Chs | SUB.C | Commrce | Pot |
| B3.33 05 63.01.15 |  | Foundations | 4d | 2026-11-01 | 2026-11-04 | B3.33 05 63.01.17 |  |  |  | 83.32d | 0d | Labor [46.78 h]; Foreman [23.39 h]; Laboratory Officer [23.39 h]; Carpenter [23.39 h]; Steelfixer [23.39 h]; Mason [23.39 h]; POT Wash out valve Dia. 100 mm on pipes with Dia. 110-400 mm [0.35]; Wash out valve chamber; on 110-400 mm Dia. pipeline [0.35] | 13,314.33 |  | 0.002161291822145 | Cons. | Z2 | Potable | Cons | CS.UNSC | Val&Chs | SUB.C | Commrce | Pot |
| B3.33 05 63.01.18 |  | Chambers Walls Conc Cast In Situ | 4d | 2026-11-05 | 2026-11-09 | B3.33 05 63.01.15 |  |  |  | 83.32d | 0d | Labor [46.78 h]; Foreman [23.39 h]; Laboratory Officer [23.39 h]; Carpenter [23.39 h]; Steelfixer [23.39 h]; Mason [23.39 h]; POT Wash out valve Dia. 100 mm on pipes with Dia. 110-400 mm [0.35]; Wash out valve chamber; on 110-400 mm Dia. pipeline [0.35] | 13,314.33 |  | 0.002161291822145 | Cons. | Z2 | Potable | Cons | CS.UNSC | Val&Chs | SUB.C | Commrce | Pot |
| B3.33 05 63.01.16 |  | Chamber Curing, Finishing & Steel Cover | 5d | 2026-11-10 | 2026-11-15 | B3.33 05 63.01.18 |  |  |  | 83.32d | 0d | Labor [62.37 h]; Mason [31.18 h]; POT Wash out valve Dia. 100 mm on pipes with Dia. 110-400 mm [0.26]; Wash out valve chamber; on 110-400 mm Dia. pipeline [0.26] | 9,985.75 |  | 0.00162096886660874 | Cons. | Z2 | Potable | Cons | CS.UNSC | Val&Chs | SUB.C | Commrce | Pot |
| B3.33 05 63.01.19 |  | Valve & Fitting Installation | 5d | 2026-11-16 | 2026-11-21 | B3.33 05 63.01.16, B3.33 14 13.01.02.5_R |  |  |  | 83.32d | 0d | Labor [62.37 h]; Plumber Helper [31.18 h]; Plumber [31.18 h]; Operator [62.37 h]; Boom Truck [32 h]; POT Wash out valve Dia. 100 mm on pipes with Dia. 110-400 mm [0.52]; Wash out valve chamber; on 110-400 mm Dia. pipeline [0.52] | 19,971.49 |  | 0.00324193773321747 | Cons. | Z2 | Potable | Cons | CS.UNSC | Val&Chs | SUB.C | Commrce | Pot |
|  | Crossing | **Plots and Buildings Crossing** |  | 2026-11-01 | 2026-11-19 |  |  |  |  |  |  |  |  |  |  |  |  |  |  |  |  |  |  |  |
| B3.33 14 13.02.16 |  | Earthwork | 7d | 2026-11-01 | 2026-11-08 | B3.33 05 63.02.22, B3.33 05 63.01.17 |  |  |  | 69.32d | 0d | Labor [93.55 h]; Foreman [46.78 h]; Operator [93.55 h]; Surveyor [46.78 h]; Surveyor Helper [46.78 h]; Excavator (With Bucket) [48 h]; Water Tanker [48 h]; Dump Truck [48 h]; Plate Compactor [48 h]; Potable Plots and Buildings Crossing Connections Dia. 110 mm [0.6] | 268.67 |  | 0.000135073084407666 | Cons. | Z2 | Potable | Cons | CS.UNSC |  | SUB.C | Commrce | Pot |
| B3.33 14 13.02.17 |  | Sand Bedding | 3d | 2026-11-09 | 2026-11-11 | B3.33 14 13.02.16, B3.33 14 13.01.02 1 |  |  |  | 87.32d | 0d | Labor [31.18 h]; Foreman [15.59 h]; Operator [62.37 h]; Surveyor [15.59 h]; Surveyor Helper [15.59 h]; Loader [16 h]; Water Tanker [16 h]; Dump Truck [16 h]; Plate Compactor [16 h]; Potable Plots and Buildings Crossing Connections Dia. 110 mm [0.6] | 268.67 |  | 0.000135073084407666 | Cons. | Z2 | Potable | Cons | CS.UNSC |  | SUB.C | Commrce | Pot |
| B3.33 14 13.02.18 |  | Tee, Pipe (Crossing) Installation & Backfilling | 7d | 2026-11-12 | 2026-11-19 | B3.33 14 13.02.17, B3.33 14 13.02.33 |  |  |  | 87.32d |  | Labor [93.55 h]; Foreman [46.78 h]; Plumber Helper [46.78 h]; Plumber [46.78 h]; Operator [93.55 h]; Surveyor [46.78 h]; Surveyor Helper [46.78 h]; Mobile Crane [48 h]; Potable Plots and Buildings Crossing Connections Dia. 110 mm [1.8] | 806.01 |  | 0.000405219253223001 | Cons. | Z2 | Potable | Cons | CS.UNSC |  | SUB.C | Commrce | Pot |

| ID | WBS | Activity | Duration | Start | Finish | Predecessors | Complete | Planned start | Planned finish | Total float | Free float | Resources | Cost | Actual cost | Weight % | DMM2 Weekly Progress | DMM2 Zones | Networks & Stations | DMM2 Phases | UNASCO | Networks Components | Subcontractors works | Dmm2 Roads | Yellow Sheet |
| --- | --- | --- | --- | --- | --- | --- | --- | --- | --- | --- | --- | --- | --- | --- | --- | --- | --- | --- | --- | --- | --- | --- | --- | --- |
|  | Fire Fighting | **Fire Fighting Network** |  | 2026-04-23 | 2026-12-02 |  |  |  |  |  |  |  |  |  |  |  |  |  |  |  |  |  |  |  |
|  | HDPE | **HDPE Pipes** |  | 2026-04-23 | 2026-11-08 |  |  |  |  |  |  |  |  |  |  |  |  |  |  |  |  |  |  |  |
|  | ?250mm | **?250mm** |  | 2026-04-23 | 2026-11-03 |  |  |  |  |  |  |  |  |  |  |  |  |  |  |  |  |  |  |  |
|  | Depth: 0.0m - 1.5m | **Depth: 0.0m - 1.5m** |  | 2026-04-23 | 2026-10-29 |  |  |  |  |  |  |  |  |  |  |  |  |  |  |  |  |  |  |  |
| B3.1. 33 14 13.01 |  | Excavation (90.00% Completed) | 121d | 2026-04-23 A | 2026-09-15 A | B3.33 14 13.01.02.1 SS, B3.33 14 13.01.01.1 SS | 100% |  |  |  |  | Labor [28.07 h]; Foreman [14.03 h]; Operator [28.07 h]; Surveyor [14.03 h]; Surveyor Helper [14.03 h]; Excavator (With Bucket) [14.4 h]; Water Tanker [14.4 h]; Dump Truck [14.4 h]; Plate Compactor [14.4 h]; Depth: 0.0m - 1.5m [118.36] | 56,634.42 | 56,634.42 | 0.0135564090273793 | Cons. | Z2 | Fire | Cons | CS.UNSC | HDPEs | SUB.C | Commrce | Fire |
| B3.1. 33 14 13.02 |  | Sand Bedding (90.00% Completed) | 120d | 2026-04-25 A | 2026-09-15 A | B3.1. 33 14 13.01 FF | 100% |  |  |  |  | Labor [28.07 h]; Foreman [14.03 h]; Operator [56.13 h]; Surveyor [14.03 h]; Surveyor Helper [14.03 h]; Loader [14.4 h]; Water Tanker [14.4 h]; Dump Truck [14.4 h]; Plate Compactor [14.4 h]; Depth: 0.0m - 1.5m [29.59] | 14,160.03 | 14,160.03 | 0.00338944352179868 | Cons. | Z2 | Fire | Cons | CS.UNSC | HDPEs | SUB.C | Commrce | Fire |
| B3.1. 33 14 13.03 |  | Pipe Laying (90.00% Completed) | 114d | 2026-05-01 A | 2026-09-15 A | B3.1. 33 14 13.02 FF | 100% | 2026-05-02 | 2026-09-15 |  |  | Labor [28.07 h]; Foreman [14.03 h]; Plumber Helper [14.03 h]; Plumber [14.03 h]; Operator [14.03 h]; Surveyor [14.03 h]; Surveyor Helper [14.03 h]; Mobile Crane [14.4 h]; Depth: 0.0m - 1.5m [266.3] | 127,428.87 | 127,428.87 | 0.0305022615765573 | Cons. | Z2 | Fire | Cons | CS.UNSC | HDPEs | SUB.C | Commrce | Fire |
| B3.1. 33 14 13.04 |  | Embedment & Test (84.00% Completed) | 107d | 2026-05-10 A | 2026-09-15 A | B3.1. 33 14 13.03 FF | 100% |  |  |  |  | Labor [65.49 h]; Foreman [32.74 h]; Plumber Helper [32.74 h]; Plumber [32.74 h]; Operator [65.49 h]; Surveyor [32.74 h]; Surveyor Helper [32.74 h]; Loader [33.6 h]; Water Tanker [33.6 h]; Dump Truck [33.6 h]; Plate Compactor [33.6 h]; Roller Compactor [33.6 h]; Depth: 0.0m - 1.5m [110.47] | 52,858.79 | 52,858.79 | 0.0135564090273793 | Cons. | Z2 | Fire | Cons | CS.UNSC | HDPEs | SUB.C | Commrce | Fire |
| B3.1. 33 14 13.05 |  | Backfilling & Warrning Tape (84.00% Completed) | 102d | 2026-05-16 A | 2026-09-15 A | B3.1. 33 14 13.04 FF | 100% |  |  |  |  | Labor [78.59 h]; Foreman [39.29 h]; Operator [157.17 h]; Surveyor [39.29 h]; Surveyor Helper [39.29 h]; Loader [40.32 h]; Water Tanker [40.32 h]; Dump Truck [40.32 h]; Plate Compactor [40.32 h]; Roller Compactor [40.32 h]; Depth: 0.0m - 1.5m [55.23] | 26,426.74 | 26,426.74 | 0.00677752198378195 | Cons. | Z2 | Fire | Cons | CS.UNSC | HDPEs | SUB.C | Commrce | Fire |
| B3.1. 33 14 13.01_R |  | Excavation(Rem) | 4d | 2026-10-21 | 2026-10-25 | B3.33 14 13.01.02.1_R SS, B3.33 14 13.01.01.1_R SS, B3.1. 33 14 13.01 |  |  |  | 42.32d | 0d | Labor [3.12 h]; Foreman [1.56 h]; Operator [3.12 h]; Surveyor [1.56 h]; Surveyor Helper [1.56 h]; Excavator (With Bucket) [1.6 h]; Water Tanker [1.6 h]; Dump Truck [1.6 h]; Plate Compactor [1.6 h]; Depth: 0.0m - 1.5m [13.15] | 6,292.71 |  | 0.0135564090273793 | Cons. | Z2 | Fire | Cons | CS.UNSC | HDPEs | SUB.C | Commrce | Fire |
| B3.1. 33 14 13.02_R |  | Sand Bedding(Rem) | 4d | 2026-10-21 | 2026-10-25 | B3.1. 33 14 13.01_R FF, B3.1. 33 14 13.02 |  |  |  | 69.25d | 0d | Labor [3.12 h]; Foreman [1.56 h]; Operator [6.24 h]; Surveyor [1.56 h]; Surveyor Helper [1.56 h]; Loader [1.6 h]; Water Tanker [1.6 h]; Dump Truck [1.6 h]; Plate Compactor [1.6 h]; Depth: 0.0m - 1.5m [3.29] | 1,573.34 |  | 0.00338944352179868 | Cons. | Z2 | Fire | Cons | CS.UNSC | HDPEs | SUB.C | Commrce | Fire |
| B3.1. 33 14 13.03_R |  | Pipe Laying(Rem) | 4d | 2026-10-21 | 2026-10-25 | B3.1. 33 14 13.02_R FF, B3.1. 33 14 13.03 |  |  |  | 69.25d | 0d | Labor [3.12 h]; Foreman [1.56 h]; Plumber Helper [1.56 h]; Plumber [1.56 h]; Operator [1.56 h]; Surveyor [1.56 h]; Surveyor Helper [1.56 h]; Mobile Crane [1.6 h]; Depth: 0.0m - 1.5m [29.59] | 14,158.76 |  | 0.0305022615765573 | Cons. | Z2 | Fire | Cons | CS.UNSC | HDPEs | SUB.C | Commrce | Fire |
| B3.1. 33 14 13.04_R |  | Embedment & Test(Rem) | 4d | 2026-10-26 | 2026-10-29 | B3.33 14 19.01.122 FF, B3.1. 33 14 13.03_R FF, B3.1. 33 14 13.04 |  |  |  | 69.25d | 0d | Labor [12.47 h]; Foreman [6.24 h]; Plumber Helper [6.24 h]; Plumber [6.24 h]; Operator [12.47 h]; Surveyor [6.24 h]; Surveyor Helper [6.24 h]; Loader [6.4 h]; Water Tanker [6.4 h]; Dump Truck [6.4 h]; Plate Compactor [6.4 h]; Roller Compactor [6.4 h]; Depth: 0.0m - 1.5m [21.04] | 10,068.34 |  | 0.0135564090273793 | Cons. | Z2 | Fire | Cons | CS.UNSC | HDPEs | SUB.C | Commrce | Fire |
| B3.1. 33 14 13.05_R |  | Backfilling & Warrning Tape(Rem) | 4d | 2026-10-26 | 2026-10-29 | B3.1. 33 14 13.04_R FF, B3.1. 33 14 13.05 |  |  |  | 69.25d | 0d | Labor [14.97 h]; Foreman [7.48 h]; Operator [29.94 h]; Surveyor [7.48 h]; Surveyor Helper [7.48 h]; Loader [7.68 h]; Water Tanker [7.68 h]; Dump Truck [7.68 h]; Plate Compactor [7.68 h]; Roller Compactor [7.68 h]; Depth: 0.0m - 1.5m [10.52] | 5,033.66 |  | 0.00677752198378195 | Cons. | Z2 | Fire | Cons | CS.UNSC | HDPEs | SUB.C | Commrce | Fire |
|  | Depth: 1.51m - 2.5m | **Depth: 1.51m - 2.5m** |  | 2026-04-25 | 2026-11-03 |  |  |  |  |  |  |  |  |  |  |  |  |  |  |  |  |  |  |  |
| B3.1. 33 14 13.2 |  | Excavation (90.00% Completed) | 120d | 2026-04-25 A | 2026-09-15 A | B3.1. 33 14 13.01 SS | 100% |  |  |  |  | Labor [28.07 h]; Foreman [14.03 h]; Operator [28.07 h]; Surveyor [14.03 h]; Surveyor Helper [14.03 h]; Excavator (With Bucket) [14.4 h]; Water Tanker [14.4 h]; Dump Truck [14.4 h]; Plate Compactor [14.4 h]; Depth: 1.51m - 2.5m [7.4] | 3,865.18 | 3,865.18 | 0.000399426118713958 | Cons. | Z2 | Fire | Cons | CS.UNSC | HDPEs | SUB.C | Commrce | Fire |
| B3.1. 33 14 13.3 |  | Sand Bedding (90.00% Completed) | 118d | 2026-04-27 A | 2026-09-15 A | B3.1. 33 14 13.2 FF | 100% |  |  |  |  | Labor [28.07 h]; Foreman [14.03 h]; Operator [56.13 h]; Surveyor [14.03 h]; Surveyor Helper [14.03 h]; Loader [14.4 h]; Water Tanker [14.4 h]; Dump Truck [14.4 h]; Plate Compactor [14.4 h]; Depth: 1.51m - 2.5m [1.85] | 966.3 | 966.3 | 9.98565296784896E-005 | Cons. | Z2 | Fire | Cons | CS.UNSC | HDPEs | SUB.C | Commrce | Fire |
| B3.1. 33 14 13.4 |  | Pipe Laying (84.00% Completed) | 113d | 2026-05-03 A | 2026-09-15 A | B3.1. 33 14 13.3 FF | 100% |  |  |  |  | Labor [39.29 h]; Foreman [19.65 h]; Plumber Helper [19.65 h]; Plumber [19.65 h]; Operator [19.65 h]; Surveyor [19.65 h]; Surveyor Helper [19.65 h]; Mobile Crane [20.16 h]; Depth: 1.51m - 2.5m [15.54] | 8,116.88 | 8,116.88 | 0.00089870876710641 | Cons. | Z2 | Fire | Cons | CS.UNSC | HDPEs | SUB.C | Commrce | Fire |
| B3.1. 33 14 13.5 |  | Embedment & Test (84.00% Completed) | 107d | 2026-05-10 A | 2026-09-15 A | B3.1. 33 14 13.4 FF | 100% |  |  |  |  | Labor [52.39 h]; Foreman [26.2 h]; Plumber Helper [26.2 h]; Plumber [26.2 h]; Operator [52.39 h]; Surveyor [26.2 h]; Surveyor Helper [26.2 h]; Loader [26.88 h]; Water Tanker [26.88 h]; Dump Truck [26.88 h]; Plate Compactor [26.88 h]; Roller Compactor [26.88 h]; Depth: 1.51m - 2.5m [6.91] | 3,607.5 | 3,607.5 | 0.000399426118713958 | Cons. | Z2 | Fire | Cons | CS.UNSC | HDPEs | SUB.C | Commrce | Fire |
| B3.1. 33 14 13.6 |  | Backfilling & Warrning Tape (84.00% Completed) | 102d | 2026-05-15 A | 2026-09-15 A | B3.1. 33 14 13.5 FF | 100% | 2026-05-16 | 2026-09-15 |  |  | Labor [91.68 h]; Foreman [45.84 h]; Operator [183.37 h]; Surveyor [45.84 h]; Surveyor Helper [45.84 h]; Loader [47.04 h]; Water Tanker [47.04 h]; Dump Truck [47.04 h]; Plate Compactor [47.04 h]; Roller Compactor [47.04 h]; Depth: 1.51m - 2.5m [3.45] | 1,803.75 | 1,803.75 | 0.00019971305935698 | Cons. | Z2 | Fire | Cons | CS.UNSC | HDPEs | SUB.C | Commrce | Fire |
| B3.1. 33 14 13.2_R |  | Excavation(Rem) | 4d | 2026-10-21 | 2026-10-25 | B3.1. 33 14 13.01_R SS, B3.1. 33 14 13.2 |  |  |  | 42.32d | 0d | Labor [3.12 h]; Foreman [1.56 h]; Operator [3.12 h]; Surveyor [1.56 h]; Surveyor Helper [1.56 h]; Excavator (With Bucket) [1.6 h]; Water Tanker [1.6 h]; Dump Truck [1.6 h]; Plate Compactor [1.6 h]; Depth: 1.51m - 2.5m [0.82] | 429.46 |  | 0.000399426118713958 | Cons. | Z2 | Fire | Cons | CS.UNSC | HDPEs | SUB.C | Commrce | Fire |
| B3.1. 33 14 13.3_R |  | Sand Bedding(Rem) | 4d | 2026-10-21 | 2026-10-25 | B3.1. 33 14 13.2_R FF, B3.1. 33 14 13.3 |  |  |  | 69.25d | 0d | Labor [3.12 h]; Foreman [1.56 h]; Operator [6.24 h]; Surveyor [1.56 h]; Surveyor Helper [1.56 h]; Loader [1.6 h]; Water Tanker [1.6 h]; Dump Truck [1.6 h]; Plate Compactor [1.6 h]; Depth: 1.51m - 2.5m [0.21] | 107.37 |  | 9.98565296784896E-005 | Cons. | Z2 | Fire | Cons | CS.UNSC | HDPEs | SUB.C | Commrce | Fire |
| B3.1. 33 14 13.4_R |  | Pipe Laying(Rem) | 4d | 2026-10-21 | 2026-10-25 | B3.1. 33 14 13.3_R FF, B3.1. 33 14 13.4 |  |  |  | 69.25d | 0d | Labor [7.48 h]; Foreman [3.74 h]; Plumber Helper [3.74 h]; Plumber [3.74 h]; Operator [3.74 h]; Surveyor [3.74 h]; Surveyor Helper [3.74 h]; Mobile Crane [3.84 h]; Depth: 1.51m - 2.5m [2.96] | 1,546.07 |  | 0.00089870876710641 | Cons. | Z2 | Fire | Cons | CS.UNSC | HDPEs | SUB.C | Commrce | Fire |
| B3.1. 33 14 13.5_R |  | Embedment & Test(Rem) | 4d | 2026-10-26 | 2026-10-29 | B3.33 14 19.01.122 FF, B3.1. 33 14 13.4_R FF, B3.1. 33 14 13.5 |  |  |  | 72.37d | 3.12d | Labor [9.98 h]; Foreman [4.99 h]; Plumber Helper [4.99 h]; Plumber [4.99 h]; Operator [9.98 h]; Surveyor [4.99 h]; Surveyor Helper [4.99 h]; Loader [5.12 h]; Water Tanker [5.12 h]; Dump Truck [5.12 h]; Plate Compactor [5.12 h]; Roller Compactor [5.12 h]; Depth: 1.51m - 2.5m [1.32] | 687.14 |  | 0.000399426118713958 | Cons. | Z2 | Fire | Cons | CS.UNSC | HDPEs | SUB.C | Commrce | Fire |
| B3.1. 33 14 13.6_R |  | Backfilling & Warrning Tape(Rem) | 3.12d | 2026-10-31 | 2026-11-03 | B3.1. 33 14 13.5_R FF, B3.1. 33 14 13.6, B3.1. 33 14 13.05_R |  |  |  | 69.25d | 18.34d | Labor [17.46 h]; Foreman [8.73 h]; Operator [34.93 h]; Surveyor [8.73 h]; Surveyor Helper [8.73 h]; Loader [8.96 h]; Water Tanker [8.96 h]; Dump Truck [8.96 h]; Plate Compactor [8.96 h]; Roller Compactor [8.96 h]; Depth: 1.51m - 2.5m [0.66] | 343.57 |  | 0.00019971305935698 | Cons. | Z2 | Fire | Cons | CS.UNSC | HDPEs | SUB.C | Commrce | Fire |

| ID | WBS | Activity | Duration | Start | Finish | Predecessors | Complete | Planned start | Planned finish | Total float | Free float | Resources | Cost | Weight % | DMM2 Weekly Progress | DMM2 Zones | Networks & Stations | DMM2 Phases | UNASCO | Networks Components | Subcontractors works | Dmm2 Roads | Yellow Sheet |
| --- | --- | --- | --- | --- | --- | --- | --- | --- | --- | --- | --- | --- | --- | --- | --- | --- | --- | --- | --- | --- | --- | --- | --- |
|  | ?355mm | **?355mm** |  | 2026-05-01 | 2026-11-08 |  |  |  |  |  |  |  |  |  |  |  |  |  |  |  |  |  |  |
|  | Depth: 1.51m - 2.5m | **Depth: 0.0m - 1.5m** |  | 2026-05-01 | 2026-11-08 |  |  |  |  |  |  |  |  |  |  |  |  |  |  |  |  |  |  |
| B3.1. 33 14 13.22 |  | Excavation (0.00% Completed) | 114d | 2026-05-01 A | 2026-09-15 A | B3.1. 33 14 13.2 SS | 100% | 2026-05-02 | 2026-09-15 |  |  | Labor; Foreman; Operator; Surveyor; Surveyor Helper; Excavator (With Bucket); Water Tanker; Dump Truck; Plate Compactor; Depth: 0.0m - 1.5m |  | 0.000551273455791081 | Cons. | Z2 | Fire | Cons | CS.UNSC | HDPEs | SUB.C | Commrce | Fire |
| B3.1. 33 14 13.23 |  | Sand Bedding (0.00% Completed) | 113d | 2026-05-03 A | 2026-09-15 A | B3.1. 33 14 13.22 FF | 100% |  |  |  |  | Labor; Foreman; Operator; Surveyor; Surveyor Helper; Loader; Water Tanker; Dump Truck; Plate Compactor; Depth: 0.0m - 1.5m |  | 0.000138229762049106 | Cons. | Z2 | Fire | Cons | CS.UNSC | HDPEs | SUB.C | Commrce | Fire |
| B3.1. 33 14 13.24 |  | Pipe Laying (0.00% Completed) | 110d | 2026-05-06 A | 2026-09-15 A | B3.1. 33 14 13.23 FF | 100% |  |  |  |  | Labor; Foreman; Plumber Helper; Plumber; Operator; Surveyor; Surveyor Helper; Mobile Crane; Depth: 0.0m - 1.5m |  | 0.00124077667363126 | Cons. | Z2 | Fire | Cons | CS.UNSC | HDPEs | SUB.C | Commrce | Fire |
| B3.1. 33 14 13.25 |  | Embedment & Test (0.00% Completed) | 107d | 2026-05-10 A | 2026-09-15 A | B3.1. 33 14 13.24 FF | 100% |  |  |  |  | Labor; Foreman; Plumber Helper; Plumber; Operator; Surveyor; Surveyor Helper; Loader; Water Tanker; Dump Truck; Plate Compactor; Roller Compactor; Depth: 0.0m - 1.5m |  | 0.000551273455791081 | Cons. | Z2 | Fire | Cons | CS.UNSC | HDPEs | SUB.C | Commrce | Fire |
| B3.1. 33 14 13.26 |  | Backfilling & Warrning Tape (0.00% Completed) | 102d | 2026-05-15 A | 2026-09-15 A | B3.1. 33 14 13.25 FF | 100% | 2026-05-16 | 2026-09-15 |  |  | Labor; Foreman; Operator; Surveyor; Surveyor Helper; Loader; Water Tanker; Dump Truck; Plate Compactor; Roller Compactor; Depth: 0.0m - 1.5m |  | 0.000276459524098212 | Cons. | Z2 | Fire | Cons | CS.UNSC | HDPEs | SUB.C | Commrce | Fire |
| B3.1. 33 14 13.22_R |  | Excavation(Rem) | 4d | 2026-10-21 | 2026-10-25 | B3.1. 33 14 13.2_R SS, B3.1. 33 14 13.22 |  |  |  | 42.32d | 0d | Labor [31.18 h]; Foreman [15.59 h]; Operator [31.18 h]; Surveyor [15.59 h]; Surveyor Helper [15.59 h]; Excavator (With Bucket) [16 h]; Water Tanker [16 h]; Dump Truck [16 h]; Plate Compactor [16 h]; Depth: 0.0m - 1.5m [5.13] | 2,961.52 | 0.000551273455791081 | Cons. | Z2 | Fire | Cons | CS.UNSC | HDPEs | SUB.C | Commrce | Fire |
| B3.1. 33 14 13.23_R |  | Sand Bedding(Rem) | 4d | 2026-10-21 | 2026-10-25 | B3.1. 33 14 13.22_R FF, B3.1. 33 14 13.23 |  |  |  | 69.25d | 0d | Labor [31.18 h]; Foreman [15.59 h]; Operator [62.37 h]; Surveyor [15.59 h]; Surveyor Helper [15.59 h]; Loader [16 h]; Water Tanker [16 h]; Dump Truck [16 h]; Plate Compactor [16 h]; Depth: 0.0m - 1.5m [1.29] | 742.59 | 0.000138229762049106 | Cons. | Z2 | Fire | Cons | CS.UNSC | HDPEs | SUB.C | Commrce | Fire |
| B3.1. 33 14 13.24_R |  | Pipe Laying(Rem) | 4d | 2026-10-21 | 2026-10-25 | B3.1. 33 14 13.23_R FF, B3.1. 33 14 13.24 |  |  |  | 69.25d | 0d | Labor [31.18 h]; Foreman [15.59 h]; Plumber Helper [15.59 h]; Plumber [15.59 h]; Operator [15.59 h]; Surveyor [15.59 h]; Surveyor Helper [15.59 h]; Mobile Crane [16 h]; Depth: 0.0m - 1.5m [11.56] | 6,665.63 | 0.00124077667363126 | Cons. | Z2 | Fire | Cons | CS.UNSC | HDPEs | SUB.C | Commrce | Fire |
| B3.1. 33 14 13.25_R |  | Embedment & Test(Rem) | 6d | 2026-10-24 | 2026-10-29 | B3.33 14 19.01.122 FF, B3.1. 33 14 13.24_R FF, B3.1. 33 14 13.25 |  |  |  | 85.32d | 8d | Labor [62.37 h]; Foreman [31.18 h]; Plumber Helper [31.18 h]; Plumber [31.18 h]; Operator [62.37 h]; Surveyor [31.18 h]; Surveyor Helper [31.18 h]; Loader [32 h]; Water Tanker [32 h]; Dump Truck [32 h]; Plate Compactor [32 h]; Roller Compactor [32 h]; Depth: 0.0m - 1.5m [5.13] | 2,961.52 | 0.000551273455791081 | Cons. | Z2 | Fire | Cons | CS.UNSC | HDPEs | SUB.C | Commrce | Fire |
| B3.1. 33 14 13.26_R |  | Backfilling & Warrning Tape(Rem) | 7d | 2026-11-01 | 2026-11-08 | B3.33 14 19.01.125 FF, B3.1. 33 14 13.25_R FF, B3.1. 33 14 13.26 |  |  |  | 77.32d | 0d | Labor [77.96 h]; Foreman [38.98 h]; Operator [155.92 h]; Surveyor [38.98 h]; Surveyor Helper [38.98 h]; Loader [40 h]; Water Tanker [40 h]; Dump Truck [40 h]; Plate Compactor [40 h]; Roller Compactor [40 h]; Depth: 0.0m - 1.5m [2.57] | 1,485.18 | 0.000276459524098212 | Cons. | Z2 | Fire | Cons | CS.UNSC | HDPEs | SUB.C | Commrce | Fire |
|  | Valves & Chambers | **Valves & Chambers** |  | 2026-10-25 | 2026-11-29 |  |  |  |  |  |  |  |  |  |  |  |  |  |  |  |  |  |  |
|  | GV | **Gate Valves** |  | 2026-10-26 | 2026-11-03 |  |  |  |  |  |  |  |  |  |  |  |  |  |  |  |  |  |  |
|  | 1 | **Gate valves dia (250) mm** |  | 2026-10-26 | 2026-11-03 |  |  |  |  |  |  |  |  |  |  |  |  |  |  |  |  |  |  |
| B3.33 14 19.01.122 |  | Burried Isolation Valve Installation | 4d | 2026-10-26 | 2026-10-29 | B3.1. 33 14 13.24_R, B3.1. 33 14 13.4_R, B3.1. 33 14 13.03_R, B3.33 05 63.01.34, B3.33 05 63.02.44 |  |  |  | 69.25d | 0d | Labor [31.18 h]; Plumber Helper [15.59 h]; Plumber [15.59 h]; Operator [31.18 h]; Boom Truck [16 h]; FF Gate V dia 250 mm [1.88] | 7,525.67 | 0.00144335522534034 | Cons. | Z2 | Fire | Cons | CS.UNSC | Val&Chs | SUB.C | Commrce | Fire |
| B3.33 14 19.01.123 |  | Spindle & Surface Box | 4d | 2026-10-31 | 2026-11-03 | B3.33 14 19.01.122 |  |  |  | 77.32d | 0d | Labor [31.18 h]; Foreman [15.59 h]; Plumber Helper [15.59 h]; Plumber [15.59 h]; Operator [31.18 h]; JCB [16 h]; FF Gate V dia 250 mm [1.25] | 5,017.11 | 0.000962236816893557 | Cons. | Z2 | Fire | Cons | CS.UNSC | Val&Chs | SUB.C | Commrce | Fire |
|  | 2 | **Air Valves** |  | 2026-10-25 | 2026-11-24 |  |  |  |  |  |  |  |  |  |  |  |  |  |  |  |  |  |  |
|  | 4 | **Air valves on less than 315 mm. (In Chamber)** |  | 2026-10-25 | 2026-11-24 |  |  |  |  |  |  |  |  |  |  |  |  |  |  |  |  |  |  |
| B3.33 05 63.02.47 |  | Land Adjustment & Compaction | 4d | 2026-10-25 | 2026-10-29 | B1.2.32 11 26.01.3 |  |  |  | 50.91d | 0d | Labor [31.18 h]; Foreman [15.59 h]; Operator [62.37 h]; Surveyor [15.59 h]; Surveyor Helper [15.59 h]; Excavator (With Bucket) [16 h]; Water Tanker [16 h]; Dump Truck [16 h]; Plate Compactor [16 h]; FF Air valve Dia. 50 mm on pipes with Dia. less than 315 mm [0.18]; FF Air valve chamber; on less than 315 mm Dia. pipeline [0.18] | 4,485.6 | 0.000842899444995834 | Cons. | Z2 | Fire | Cons | CS.UNSC | Val&Chs | SUB.C | Commrce | Fire |
| B3.33 05 63.02.45 |  | Foundations | 5d | 2026-10-29 | 2026-11-04 | B3.33 05 63.02.47 |  |  |  | 83.88d | 0d | Labor [46.78 h]; Foreman [23.39 h]; Laboratory Officer [23.39 h]; Carpenter [23.39 h]; Steelfixer [23.39 h]; Mason [23.39 h]; FF Air valve Dia. 50 mm on pipes with Dia. less than 315 mm [0.18]; FF Air valve chamber; on less than 315 mm Dia. pipeline [0.24] | 5,821.24 | 0.00109388285056526 | Cons. | Z2 | Fire | Cons | CS.UNSC | Val&Chs | SUB.C | Commrce | Fire |
| B3.33 05 63.02.48 |  | Chambers Walls Conc Cast In Situ | 5d | 2026-11-04 | 2026-11-10 | B3.33 05 63.02.45 |  |  |  | 83.88d | 0d | Labor [46.78 h]; Foreman [23.39 h]; Laboratory Officer [23.39 h]; Carpenter [23.39 h]; Steelfixer [23.39 h]; Mason [23.39 h]; FF Air valve Dia. 50 mm on pipes with Dia. less than 315 mm [0.24]; FF Air valve chamber; on less than 315 mm Dia. pipeline [0.24] | 5,980.8 | 0.00112386592666111 | Cons. | Z2 | Fire | Cons | CS.UNSC | Val&Chs | SUB.C | Commrce | Fire |
| B3.33 05 63.02.46 |  | Chamber Curing, Finishing & Steel Cover | 6d | 2026-11-10 | 2026-11-17 | B3.33 05 63.02.48, B3.1. 33 14 13-16 |  |  |  | 83.88d | 0d | Labor [62.37 h]; Mason [31.18 h]; FF Air valve Dia. 50 mm on pipes with Dia. less than 315 mm [0.24]; FF Air valve chamber; on less than 315 mm Dia. pipeline [0.18] | 4,645.16 | 0.000872882521091683 | Cons. | Z2 | Fire | Cons | CS.UNSC | Val&Chs | SUB.C | Commrce | Fire |
| B3.33 05 63.02.49 |  | Valve & Fitting Installation | 6d | 2026-11-17 | 2026-11-24 | B3.33 05 63.02.46, B3.33 14 19.01.fm50, B3.1. 33 14 13-20 |  |  |  | 83.88d | 6.97d | Labor [62.37 h]; Plumber Helper [31.18 h]; Plumber [31.18 h]; Operator [62.37 h]; Boom Truck [32 h]; FF Air valve Dia. 50 mm on pipes with Dia. less than 315 mm [0.38]; FF Air valve chamber; on less than 315 mm Dia. pipeline [0.38] | 9,344.99 | 0.001756040510408 | Cons. | Z2 | Fire | Cons | CS.UNSC | Val&Chs | SUB.C | Commrce | Fire |

| ID | WBS | Activity | Duration | Start | Finish | Predecessors | Complete | Planned start | Planned finish | Total float | Free float | Resources | Cost | Actual cost | Weight % | DMM2 Weekly Progress | DMM2 Zones | Networks & Stations | DMM2 Phases | UNASCO | Networks Components | Subcontractors works | Dmm2 Roads | Yellow Sheet | All Electrical Scope |
| --- | --- | --- | --- | --- | --- | --- | --- | --- | --- | --- | --- | --- | --- | --- | --- | --- | --- | --- | --- | --- | --- | --- | --- | --- | --- |
|  | Washout Valves | **Washout Valves** |  | 2026-10-29 | 2026-11-29 |  |  |  |  |  |  |  |  |  |  |  |  |  |  |  |  |  |  |  |  |
|  | 4 | **Washout valves on 110-400 mm. (In Chamber)** |  | 2026-10-29 | 2026-11-29 |  |  |  |  |  |  |  |  |  |  |  |  |  |  |  |  |  |  |  |  |
| B3.33 05 63.01.37 |  | Land Adjustment & Compaction | 4d | 2026-10-29 | 2026-11-03 | B3.33 05 63.02.47 |  |  |  | 50.91d | 0d | Labor [31.18 h]; Foreman [15.59 h]; Operator [62.37 h]; Surveyor [15.59 h]; Surveyor Helper [15.59 h]; Excavator (With Bucket) [16 h]; Water Tanker [16 h]; Dump Truck [16 h]; Plate Compactor [16 h]; FF Wash out valve Dia. 100 mm on pipes with Dia. 110-400 mm [0.19]; FF Wash out valve chamber; on 110-400 mm Dia. pipeline [0.21] | 7,932 |  | 0.00140430274510935 | Cons. | Z2 | Fire | Cons | CS.UNSC | Val&Chs | SUB.C | Commrce | Fire |  |
| B3.33 05 63.01.35 |  | Foundations | 5d | 2026-11-03 | 2026-11-09 | B3.33 05 63.01.37 |  |  |  | 50.91d | 0d | Labor [46.78 h]; Foreman [23.39 h]; Laboratory Officer [23.39 h]; Carpenter [23.39 h]; Steelfixer [23.39 h]; Mason [23.39 h]; FF Wash out valve Dia. 100 mm on pipes with Dia. 110-400 mm [0.19]; FF Wash out valve chamber; on 110-400 mm Dia. pipeline [0.26] | 9,649.37 |  | 0.00179441315636236 | Cons. | Z2 | Fire | Cons | CS.UNSC | Val&Chs | SUB.C | Commrce | Fire |  |
| B3.33 05 63.01.38 |  | Chambers Walls Conc Cast In Situ | 5d | 2026-11-09 | 2026-11-15 | B3.33 05 63.01.35 |  |  |  | 50.91d | 0d | Labor [46.78 h]; Foreman [23.39 h]; Laboratory Officer [23.39 h]; Carpenter [23.39 h]; Steelfixer [23.39 h]; Mason [23.39 h]; FF Wash out valve Dia. 100 mm on pipes with Dia. 110-400 mm [0.25]; FF Wash out valve chamber; on 110-400 mm Dia. pipeline [0.26] | 9,870.62 |  | 0.00183639589745068 | Cons. | Z2 | Fire | Cons | CS.UNSC | Val&Chs | SUB.C | Commrce | Fire |  |
| B3.33 05 63.01.36 |  | Chamber Curing, Finishing & Steel Cover | 6d | 2026-11-15 | 2026-11-22 | B3.33 05 63.01.38 |  |  |  | 50.91d | 0d | Labor [62.37 h]; Mason [31.18 h]; FF Wash out valve Dia. 100 mm on pipes with Dia. 110-400 mm [0.25]; FF Wash out valve chamber; on 110-400 mm Dia. pipeline [0.19] | 7,621.88 |  | 0.00144628548619767 | Cons. | Z2 | Fire | Cons | CS.UNSC | Val&Chs | SUB.C | Commrce | Fire |  |
| B3.33 05 63.01.39 |  | Valve & Fitting Installation | 6d | 2026-11-22 | 2026-11-29 | B3.33 05 63.01.36 |  |  |  | 50.91d | 0d | Labor [62.37 h]; Plumber Helper [31.18 h]; Plumber [31.18 h]; Operator [62.37 h]; Boom Truck [32 h]; FF Wash out valve Dia. 100 mm on pipes with Dia. 110-400 mm [0.39]; FF Wash out valve chamber; on 110-400 mm Dia. pipeline [0.39] | 14,801.26 |  | 0.00280860549021868 | Cons. | Z2 | Fire | Cons | CS.UNSC | Val&Chs | SUB.C | Commrce | Fire |  |
|  | 3 | **Fire Hydrant** |  | 2026-06-08 | 2026-12-02 |  |  |  |  |  |  |  |  |  |  |  |  |  |  |  |  |  |  |  |  |
| B3.33 14 19.01.fh20 |  | Riser Pipe & Flanged Fittings Installation (1.00% Completed) | 85.16d | 2026-06-08 A | 2026-09-15 A | B3.33 14 19.01.fh21 FF+1d, B3.33 14 19.01.fh21 SS+1d | 100% |  |  |  |  | Labor [0.31 h]; Plumber Helper [0.16 h]; Welder [0.16 h]; Plumber [0.16 h]; Surveyor [0.16 h]; Surveyor Helper [0.16 h]; Welding Machine [0.16 h]; 3-outlet fire hydrant (2 x 2.5 inch and 1 x 4.5 inch) in the form of a separate dry vacuum cylinder [0.01] | 164.15 | 164.15 | 0.00314407764631429 | Cons. | Z2 | Fire | Cons | CS.UNSC | FH | SUB.C | Commrce | Fire |  |
| B3.33 14 19.01.fh19 |  | Firehydrant Fixing/Installation (1.00% Completed) | 79.16d | 2026-06-15 A | 2026-09-15 A | B3.1. 33 14 13.24 | 100% |  |  |  |  | Labor [0.47 h]; Foreman [0.23 h]; Plumber Helper [0.23 h]; Plumber [0.23 h]; Operator [0.47 h]; Surveyor [0.23 h]; Surveyor Helper [0.23 h]; JCB [0.24 h]; 3-outlet fire hydrant (2 x 2.5 inch and 1 x 4.5 inch) in the form of a separate dry vacuum cylinder [0.04] | 492.46 | 492.46 | 0.0094322329389428 | Cons. | Z2 | Fire | Cons | CS.UNSC | FH | SUB.C | Commrce | Fire |  |
| B3.33 14 19.01.fh21 |  | Backfilling & Compaction (1.00% Completed) | 85.62d | 2026-06-27 A | 2026-09-15 A | B3.33 14 19.01.fh19 SS | 100% | 2026-06-08 | 2026-09-15 |  |  | Labor [0.78 h]; Foreman [0.39 h]; Operator [0.78 h]; Surveyor [0.39 h]; Surveyor Helper [0.39 h]; Loader [0.4 h]; Water Tanker [0.4 h]; Dump Truck [0.4 h]; Plate Compactor [0.4 h]; 3-outlet fire hydrant (2 x 2.5 inch and 1 x 4.5 inch) in the form of a separate dry vacuum cylinder [0.01] | 164.15 | 164.15 | 0.00314407764631429 | Cons. | Z2 | Fire | Cons | CS.UNSC | FH | SUB.C | Commrce | Fire |  |
| B3.33 14 19.01.fh19_R |  | Firehydrant Fixing/Installation(Rem) | 4.97d | 2026-11-24 | 2026-11-30 | B3.33 14 19.01.fh20_R SS, B3.33 14 19.01.fh19 |  |  |  | 50.91d | 0d | Labor [46.31 h]; Foreman [23.15 h]; Plumber Helper [23.15 h]; Plumber [23.15 h]; Operator [46.31 h]; Surveyor [23.15 h]; Surveyor Helper [23.15 h]; JCB [23.76 h]; 3-outlet fire hydrant (2 x 2.5 inch and 1 x 4.5 inch) in the form of a separate dry vacuum cylinder [4.43] | 48,753.4 |  | 0.0094322329389428 | Cons. | Z2 | Fire | Cons | CS.UNSC | FH | SUB.C | Commrce | Fire |  |
| B3.33 14 19.01.fh20_R |  | Riser Pipe & Flanged Fittings Installation(Rem) | 3.98d | 2026-11-24 | 2026-11-29 | B3.33 05 63.01.39 FF, B3.33 14 19.01.fh20 |  |  |  | 50.91d | 0d | Labor [30.87 h]; Plumber Helper [15.44 h]; Welder [15.44 h]; Plumber [15.44 h]; Surveyor [15.44 h]; Surveyor Helper [15.44 h]; Welding Machine [15.84 h]; 3-outlet fire hydrant (2 x 2.5 inch and 1 x 4.5 inch) in the form of a separate dry vacuum cylinder [1.48] | 16,251.13 |  | 0.00314407764631429 | Cons. | Z2 | Fire | Cons | CS.UNSC | FH | SUB.C | Commrce | Fire |  |
| B3.33 14 19.01.fh21_R |  | Backfilling & Compaction(Rem) | 6.95d | 2026-11-24 | 2026-12-02 | B3.33 05 63.02.59 FF, B3.33 05 63.01.54 FF, B3.33 14 19.01.fh19_R SS, B3.33 14 19.01.fh21, B3.1. 33 14 13.6_R |  |  |  | 50.91d | 0d | Labor [77.18 h]; Foreman [38.59 h]; Operator [77.18 h]; Surveyor [38.59 h]; Surveyor Helper [38.59 h]; Loader [39.6 h]; Water Tanker [39.6 h]; Dump Truck [39.6 h]; Plate Compactor [39.6 h]; 3-outlet fire hydrant (2 x 2.5 inch and 1 x 4.5 inch) in the form of a separate dry vacuum cylinder [1.48] | 16,251.13 |  | 0.00314407764631429 | Cons. | Z2 | Fire | Cons | CS.UNSC | FH | SUB.C | Commrce | Fire |  |
|  | Dry Networks | **Dry Networks** |  | 2026-11-05 | 2026-12-20 |  |  |  |  |  |  |  |  |  |  |  |  |  |  |  |  |  |  |  |  |
|  | MV | **Medium Voltage Network** |  | 2026-11-09 | 2026-12-15 |  |  |  |  |  |  |  |  |  |  |  |  |  |  |  |  |  |  |  |  |
|  | Duct Banks | **Duct Banks** |  | 2026-11-09 | 2026-11-26 |  |  |  |  |  |  |  |  |  |  |  |  |  |  |  |  |  |  |  |  |
|  | 4 Way | **4 Way** |  | 2026-11-09 | 2026-11-26 |  |  |  |  |  |  |  |  |  |  |  |  |  |  |  |  |  |  |  |  |
| B2.33 71 00 02 43 |  | Excavation | 8d | 2026-11-09 | 2026-11-17 | B3.1. 33 14 13.26_R |  |  |  | 77.32d | 0d | Labor [109.15 h]; Foreman [54.57 h]; Operator [109.15 h]; Surveyor [54.57 h]; Surveyor Helper [54.57 h]; Excavator (With Bucket) [56 h]; Water Tanker [56 h]; Dump Truck [56 h]; Plate Compactor [56 h]; Excavation for Trench size 60cm wide and 80cm deep ( for 2 cables) [83.13]; Duct bank for MV cables UPVC (4xDia. 150mm) [2.75] | 3,411.59 |  | 0.00233790321174861 | Cons. | Z2 | MV | Cons |  | Cbl&Dct | SUB.C | Commrce | MV | allElec |
| B2.33 71 00 02 44 |  | Shuttering, Steel Fixing Incl. UPVC Pipe & Conc. Cast | 4d | 2026-11-18 | 2026-11-22 | B2.33 71 00 02 43 |  |  |  | 77.32d | 0d | Labor [233.89 h]; Laboratory Officer [116.94 h]; Carpenter [116.94 h]; Steelfixer [116.94 h]; Mason [116.94 h]; Surveyor [116.94 h]; Surveyor Helper [116.94 h]; Excavation for Trench size 60cm wide and 80cm deep ( for 2 cables) [83.13]; Duct bank for MV cables UPVC (4xDia. 150mm) [8.25] | 6,439.38 |  | 0.00510557719618019 | Cons. | Z2 | MV | Cons |  | Cbl&Dct | SUB.C | Commrce | MV | allElec |
| B2.33 71 00 02 45 |  | Backfilling & Warrning Tape | 4d | 2026-11-23 | 2026-11-26 | B2.33 71 00 02 44, B2 33 73 00.01.9, B2.33 71 49.23.94 |  |  |  | 77.32d | 0d | Labor [155.92 h]; Foreman [77.96 h]; Operator [311.85 h]; Surveyor [77.96 h]; Surveyor Helper [77.96 h]; Loader [80 h]; Water Tanker [80 h]; Dump Truck [80 h]; Plate Compactor [80 h]; Roller Compactor [80 h]; Excavation for Trench size 60cm wide and 80cm deep ( for 2 cables) [166.24]; Duct bank for MV cables UPVC (4xDia. 150mm) [2.75] | 5,308.83 |  | 0.003291739895321 | Cons. | Z2 | MV | Cons |  | Cbl&Dct | SUB.C | Commrce | MV | allElec |
|  | Cables | **Cables** |  | 2026-12-02 | 2026-12-15 |  |  |  |  |  |  |  |  |  |  |  |  |  |  |  |  |  |  |  |  |
|  | 3C,500mm2 | **3C,500mm2** |  | 2026-12-02 | 2026-12-15 |  |  |  |  |  |  |  |  |  |  |  |  |  |  |  |  |  |  |  |  |
| B2.33 71 49.23.65 |  | Cable 13.8 kV Unarmored | 5d | 2026-12-02 | 2026-12-08 | B3.33 14 19.01.fh21_R |  |  |  | 50.91d | 0d | Labor [62.37 h]; Foreman [31.18 h]; Operator [62.37 h]; Boom Truck [32 h]; Electrician [31.18 h]; Cable 13.8 kV 3Cx 500 mm² Al XLPE,/LLDPE / Unarmored [681.79] | 234,058.34 |  | 0.0447374191430308 | Cons. | Z2 | MV | Cons |  | Cbl&Dct | SUB.C | Commrce | MV | allElec |
| B2.33 71 49.23.66 |  | Straight joints cables | 3d | 2026-12-08 | 2026-12-12 | B2.33 71 49.23.65 |  |  |  | 62.91d | 0d | Labor [31.18 h]; Foreman [15.59 h]; Electrician [15.59 h]; Straight joints cables for 13.8 kv 3Cx 500 mm², Al /XLPE/LLDPE [2] | 7,880.95 |  | 0.00396214380929156 | Cons. | Z2 | MV | Cons |  | Cbl&Dct | SUB.C | Commrce | MV | allElec |
| B2.33 71 49.23.67 |  | Cable Termination | 3d | 2026-12-12 | 2026-12-15 | B2.33 71 49.23.66 |  |  |  | 62.91d | 0d | Labor [31.18 h]; Foreman [15.59 h]; Electrician [15.59 h]; Cable Termination for 13.8 kv 3Cx 500 mm², Al /XLPE/LLDPE [0.91] | 3,058.5 |  | 0.00153766139892947 | Cons. | Z2 | MV | Cons |  | Cbl&Dct | SUB.C | Commrce | MV | allElec |

| ID | WBS | Activity | Duration | Start | Finish | Predecessors | Total float | Free float | Resources | Cost | Weight % | DMM2 Weekly Progress | DMM2 Zones | Networks & Stations | DMM2 Phases | Networks Components | All Electrical Scope | Subcontractors works | Dmm2 Roads | Yellow Sheet |
| --- | --- | --- | --- | --- | --- | --- | --- | --- | --- | --- | --- | --- | --- | --- | --- | --- | --- | --- | --- | --- |
|  | Street Lighting | **Street Lighting** |  | 2026-12-08 | 2026-12-20 |  |  |  |  |  |  |  |  |  |  |  |  |  |  |  |
|  | SL Poles | **SL Poles** |  | 2026-12-08 | 2026-12-20 |  |  |  |  |  |  |  |  |  |  |  |  |  |  |  |
|  | Pole (10 M Sngl Arm) | **Pole (10 M Single Arm)** |  | 2026-12-08 | 2026-12-20 |  |  |  |  |  |  |  |  |  |  |  |  |  |  |  |
| B2.33 71 16.35 |  | Excavation | 3d | 2026-12-08 | 2026-12-12 | B2.33 71 49.23.65 | 50.91d | 0d | Labor [46.78 h]; Foreman [23.39 h]; Operator [46.78 h]; Surveyor [23.39 h]; Surveyor Helper [23.39 h]; Excavator (With Bucket) [24 h]; Dump Truck [24 h]; Lighting poles with 1 arm, height of ( 10) meters [6.6] | 58,898.5 | 0.0112471278804954 | Cons. | Z2 | SL | Cons | Pls&Lmn | allElec | SUB.C | Commrce | SL |
| B2.33 71 16.38 |  | Backfilling, Grouting & Chamfering | 3d | 2026-12-10 | 2026-12-13 | B2.33 71 19 92, B2.33 71 00 02 54 | 62.32d | 0d | Labor [93.55 h]; Foreman [46.78 h]; Mason [46.78 h]; Operator [93.55 h]; Surveyor [46.78 h]; Surveyor Helper [46.78 h]; Loader [48 h]; Water Tanker [48 h]; Dump Truck [48 h]; Plate Compactor [48 h]; Lighting poles with 1 arm, height of ( 10) meters [6.6] | 58,898.5 | 0.0112471278804954 | Cons. | Z2 | SL | Cons | Pls&Lmn | allElec | SUB.C | Commrce | SL |
| B2.33 71 16.36 |  | PC & RC Foundation | 3d | 2026-12-12 | 2026-12-15 | B2.33 71 16.35 | 50.91d | 0d | Labor [77.96 h]; Foreman [38.98 h]; Laboratory Officer [38.98 h]; Carpenter [38.98 h]; Steelfixer [38.98 h]; Mason [38.98 h]; Lighting poles with 1 arm, height of ( 10) meters [6.6] | 58,898.5 | 0.0112471278804954 | Cons. | Z2 | SL | Cons | Pls&Lmn | allElec | SUB.C | Commrce | SL |
| B2.33 71 16.37 |  | Lighting Poles Installation Incl power box, Cables | 2d | 2026-12-15 | 2026-12-17 | B2.33 71 16.36 | 50.91d | 0d | Labor [93.55 h]; Operator [93.55 h]; Mobile Crane [48 h]; Electrician [46.78 h]; Lighting poles with 1 arm, height of ( 10) meters [13.2] | 117,797 | 0.0224942557609906 | Cons. | Z2 | SL | Cons | Pls&Lmn | allElec | SUB.C | Commrce | SL |
| B2.26.56.19.2 |  | Lighting Luminares Inst | 2d | 2026-12-17 | 2026-12-20 | B2.33 71 16.37 | 50.91d | 0d | Labor [62.37 h]; Operator [62.37 h]; Manlift [32 h]; Street Lighting( LED), Lamp Lumen: 14560, Luminare Lumen:12700 , complete with control gear and lamp, (80) WATT. [30.11] | 27,918.13 | 0.0047113256383061 | Cons. | Z2 | SL | Cons | Pls&Lmn | allElec | SUB.C | Commrce | SL |
|  | Earthing | **Earthing** |  | 2026-12-10 | 2026-12-16 |  |  |  |  |  |  |  |  |  |  |  |  |  |  |  |
| B2.33 71 19 23 |  | Land Adjustment | 3d | 2026-12-10 | 2026-12-13 | B2.33 71 16.38 SS | 62.32d | 0d | Labor [46.78 h]; Foreman [23.39 h]; Operator [31.18 h]; Surveyor [7.8 h]; Surveyor Helper [7.8 h]; Excavator (With Bucket) [24 h]; Water Tanker [24 h]; Dump Truck [24 h]; Roller Compactor [24 h]; SL Earthing Including lighting poles circuits [0.45] | 904.39 | 0.000454679838542865 | Cons. | Z2 | SL | Cons | Cables | allElec | SUB.C | Commrce | SL |
| B2.33 71 19 24 |  | Earth Rods & Conduits | 1d | 2026-12-14 | 2026-12-14 | B2.33 71 19 23 | 62.32d | 0d | Labor [46.78 h]; Foreman [23.39 h]; Electrician [23.39 h]; SL Earthing Including lighting poles circuits [1.33] | 2,672.96 | 0.00134383152280447 | Cons. | Z2 | SL | Cons | Cables | allElec | SUB.C | Commrce | SL |
| B2.33 71 19 25 |  | Backfilling | 2d | 2026-12-15 | 2026-12-16 | B2.33 71 19 24 | 62.32d | 0d | Labor [93.55 h]; Foreman [46.78 h]; Operator [93.55 h]; Surveyor [46.78 h]; Surveyor Helper [46.78 h]; Loader [48 h]; Water Tanker [48 h]; Dump Truck [48 h]; Plate Compactor [48 h]; SL Earthing Including lighting poles circuits [0.45] | 904.39 | 0.000454679838542865 | Cons. | Z2 | SL | Cons | Cables | allElec | SUB.C | Commrce | SL |
|  | Telecommunication | **Telecommunication Network** |  | 2026-11-05 | 2026-12-09 |  |  |  |  |  |  |  |  |  |  |  |  |  |  |  |
|  | Ducts | **Ducts** |  | 2026-11-05 | 2026-12-09 |  |  |  |  |  |  |  |  |  |  |  |  |  |  |  |
|  | (6*50mm) | **Size (6*50mm) HDPE ducts** |  | 2026-11-05 | 2026-11-11 |  |  |  |  |  |  |  |  |  |  |  |  |  |  |  |
| B2.1.33 81 26.54 |  | Excavation | 2d | 2026-11-05 | 2026-11-07 | B2.1.33 81 26.162_R | 33.32d | 0d | Labor [31.18 h]; Foreman [15.59 h]; Operator [31.18 h]; Surveyor [15.59 h]; Surveyor Helper [15.59 h]; Excavator (With Bucket) [16 h]; Water Tanker [16 h]; Dump Truck [16 h]; Plate Compactor [16 h]; (6*50mm) HDPE ducts [125.82] | 35,460.35 | 0.00690393952512995 | Cons. | Z2 | Telecom | Cons | DCT&MNH | allElec | SUB.C | Commrce | TEL |
| B2.1.33 81 26.55 |  | HDPE Pipe, Shuttering, Steel Fixing & Conc. Cast | 2d | 2026-11-08 | 2026-11-09 | B2.1.33 81 26.54 | 45.32d | 0d | Labor [93.55 h]; Laboratory Officer [46.78 h]; Carpenter [46.78 h]; Steelfixer [46.78 h]; Mason [46.78 h]; Surveyor [46.78 h]; Surveyor Helper [46.78 h]; (6*50mm) HDPE ducts [377.45] | 106,381.04 | 0.0207118185753898 | Cons. | Z2 | Telecom | Cons | DCT&MNH | allElec | SUB.C | Commrce | TEL |
| B2.1.33 81 26.56 |  | Backfilling & Warrning Tape | 2d | 2026-11-10 | 2026-11-11 | B2.1.33 81 26.55 | 45.32d | 0d | Labor [77.96 h]; Foreman [38.98 h]; Operator [155.92 h]; Surveyor [38.98 h]; Surveyor Helper [38.98 h]; Loader [40 h]; Water Tanker [40 h]; Dump Truck [40 h]; Plate Compactor [40 h]; Roller Compactor [40 h]; (6*50mm) HDPE ducts [125.82] | 35,460.35 | 0.00690393952512995 | Cons. | Z2 | Telecom | Cons | DCT&MNH | allElec | SUB.C | Commrce | TEL |
|  | (6*50mm+2*32mm) | **Size (6*50mm+2*32mm) HDPE ducts** |  | 2026-11-05 | 2026-12-07 |  |  |  |  |  |  |  |  |  |  |  |  |  |  |  |
| B2.1.33 81 26.57 |  | Excavation | 2d | 2026-11-05 | 2026-11-07 | B2.1.33 81 26.54 SS | 33.32d | 0d | Labor [31.18 h]; Foreman [15.59 h]; Operator [31.18 h]; Surveyor [15.59 h]; Surveyor Helper [15.59 h]; Excavator (With Bucket) [16 h]; Water Tanker [16 h]; Dump Truck [16 h]; Plate Compactor [16 h]; (6*50mm+2*32mm) HDPE ducts [48.51] | 21,251.23 | 0.00243727564627162 | Cons. | Z2 | Telecom | Cons | DCT&MNH | allElec | SUB.C | Commrce | TEL |
| B2.1.33 81 26.58 |  | HDPE Pipe, Shuttering, Steel Fixing & Conc. Cast | 2d | 2026-11-08 | 2026-11-09 | B2.1.33 81 26.57 | 88.32d | 22d | Labor [62.37 h]; Laboratory Officer [31.18 h]; Carpenter [31.18 h]; Steelfixer [31.18 h]; Mason [31.18 h]; Surveyor [31.18 h]; Surveyor Helper [31.18 h]; (6*50mm+2*32mm) HDPE ducts [145.49] | 63,742.79 | 0.00731057705386804 | Cons. | Z2 | Telecom | Cons | DCT&MNH | allElec | SUB.C | Commrce | TEL |
| B2.1.33 81 26.59 |  | Backfilling & Warrning Tape | 2d | 2026-12-06 | 2026-12-07 | B2.1.33 81 26.58, B2.1.33 81 26.104, B2.1.33 81 26.182, B2.33 71 00.277, B2.33 71 00.231 | 66.32d | 0d | Labor [62.37 h]; Foreman [31.18 h]; Operator [124.74 h]; Surveyor [31.18 h]; Surveyor Helper [31.18 h]; Loader [32 h]; Water Tanker [32 h]; Dump Truck [32 h]; Plate Compactor [32 h]; Roller Compactor [32 h]; (6*50mm+2*32mm) HDPE ducts [48.51] | 21,251.23 | 0.00243727564627162 | Cons. | Z2 | Telecom | Cons | DCT&MNH | allElec | SUB.C | Commrce | TEL |
|  | (6*50mm+4*32mm) | **Size (6*50mm+4*32mm) HDPE ducts** |  | 2026-11-05 | 2026-11-11 |  |  |  |  |  |  |  |  |  |  |  |  |  |  |  |
| B2.1.33 81 26.60 |  | Excavation | 2d | 2026-11-05 | 2026-11-07 | B2.1.33 81 26.57 SS | 33.32d | 0d | Labor [31.18 h]; Foreman [15.59 h]; Operator [31.18 h]; Surveyor [15.59 h]; Surveyor Helper [15.59 h]; Excavator (With Bucket) [16 h]; Water Tanker [16 h]; Dump Truck [16 h]; Plate Compactor [16 h]; (6*50mm+4*32mm) HDPE ducts [15] | 7,441.11 | 0.00340443051603132 | Cons. | Z2 | Telecom | Cons | DCT&MNH | allElec | SUB.C | Commrce | TEL |
| B2.1.33 81 26.61 |  | HDPE Pipe, Shuttering, Steel Fixing & Conc. Cast | 2d | 2026-11-08 | 2026-11-09 | B2.1.33 81 26.60 | 89.32d | 0d | Labor [62.37 h]; Laboratory Officer [31.18 h]; Carpenter [31.18 h]; Steelfixer [31.18 h]; Mason [31.18 h]; Surveyor [31.18 h]; Surveyor Helper [31.18 h]; (6*50mm+4*32mm) HDPE ducts [45] | 22,323.32 | 0.010213291548094 | Cons. | Z2 | Telecom | Cons | DCT&MNH | allElec | SUB.C | Commrce | TEL |
| B2.1.33 81 26.62 |  | Backfilling & Warrning Tape | 2d | 2026-11-10 | 2026-11-11 | B2.1.33 81 26.61 | 89.32d | 2d | Labor [62.37 h]; Foreman [31.18 h]; Operator [124.74 h]; Surveyor [31.18 h]; Surveyor Helper [31.18 h]; Loader [32 h]; Water Tanker [32 h]; Dump Truck [32 h]; Plate Compactor [32 h]; Roller Compactor [32 h]; (6*50mm+4*32mm) HDPE ducts [15] | 7,441.11 | 0.00340443051603132 | Cons. | Z2 | Telecom | Cons | DCT&MNH | allElec | SUB.C | Commrce | TEL |

| ID | WBS | Activity | Duration | Start | Finish | Predecessors | Complete | Total float | Free float | Resources | Cost | Actual cost | Weight % | DMM2 Weekly Progress | DMM2 Zones | Networks & Stations | DMM2 Phases | Networks Components | All Electrical Scope | Subcontractors works | Dmm2 Roads | Yellow Sheet |
| --- | --- | --- | --- | --- | --- | --- | --- | --- | --- | --- | --- | --- | --- | --- | --- | --- | --- | --- | --- | --- | --- | --- |
|  | (2*32mm) | **Size (2*32mm) HDPE ducts** |  | 2026-11-05 | 2026-11-11 |  |  |  |  |  |  |  |  |  |  |  |  |  |  |  |  |  |
| B2.1.33 81 26.63 |  | Excavation | 2d | 2026-11-05 | 2026-11-07 | B2.1.33 81 26.60 SS |  | 33.32d | 0d | Labor [31.18 h]; Foreman [15.59 h]; Operator [31.18 h]; Surveyor [15.59 h]; Surveyor Helper [15.59 h]; Excavator (With Bucket) [16 h]; Water Tanker [16 h]; Dump Truck [16 h]; Plate Compactor [16 h]; (2*32mm) HDPE ducts [8.6] | 1,344.05 |  | 0.000194889802563824 | Cons. | Z2 | Telecom | Cons | DCT&MNH | allElec | SUB.C | Commrce | TEL |
| B2.1.33 81 26.64 |  | HDPE Pipe, Shuttering, Steel Fixing & Conc. Cast | 2d | 2026-11-08 | 2026-11-09 | B2.1.33 81 26.63 |  | 35.32d | 0d | Labor [46.78 h]; Laboratory Officer [23.39 h]; Carpenter [23.39 h]; Steelfixer [23.39 h]; Mason [23.39 h]; Surveyor [23.39 h]; Surveyor Helper [23.39 h]; (2*32mm) HDPE ducts [25.8] | 4,032.14 |  | 0.000584669407691468 | Cons. | Z2 | Telecom | Cons | DCT&MNH | allElec | SUB.C | Commrce | TEL |
| B2.1.33 81 26.65 |  | Backfilling & Warrning Tape | 2d | 2026-11-10 | 2026-11-11 | B2.1.33 81 26.64, B2.1.02 41 00.016 |  | 35.32d | 2d | Labor [46.78 h]; Foreman [23.39 h]; Operator [93.55 h]; Surveyor [23.39 h]; Surveyor Helper [23.39 h]; Loader [24 h]; Water Tanker [24 h]; Dump Truck [24 h]; Plate Compactor [24 h]; Roller Compactor [24 h]; (2*32mm) HDPE ducts [8.6] | 1,344.05 |  | 0.000194889802563824 | Cons. | Z2 | Telecom | Cons | DCT&MNH | allElec | SUB.C | Commrce | TEL |
|  | (4*32mm) | **Size (4*32mm) HDPE ducts** |  | 2026-11-08 | 2026-12-09 |  |  |  |  |  |  |  |  |  |  |  |  |  |  |  |  |  |
| B2.1.33 81 26.66 |  | Excavation | 2d | 2026-11-08 | 2026-11-09 | B2.1.33 81 26.63 |  | 33.32d | 0d | Labor [31.18 h]; Foreman [15.59 h]; Operator [31.18 h]; Surveyor [15.59 h]; Surveyor Helper [15.59 h]; Excavator (With Bucket) [16 h]; Water Tanker [16 h]; Dump Truck [16 h]; Plate Compactor [16 h]; (4*32mm) HDPE ducts [5.13] | 1,099.7 |  | 0.000169743608400202 | Cons. | Z2 | Telecom | Cons | DCT&MNH | allElec | SUB.C | Commrce | TEL |
| B2.1.33 81 26.67 |  | HDPE Pipe, Shuttering, Steel Fixing & Conc. Cast | 2d | 2026-11-10 | 2026-11-11 | B2.1.33 81 26.66 |  | 88.32d | 22d | Labor [46.78 h]; Laboratory Officer [23.39 h]; Carpenter [23.39 h]; Steelfixer [23.39 h]; Mason [23.39 h]; Surveyor [23.39 h]; Surveyor Helper [23.39 h]; (4*32mm) HDPE ducts [15.4] | 3,299.11 |  | 0.000509230825200604 | Cons. | Z2 | Telecom | Cons | DCT&MNH | allElec | SUB.C | Commrce | TEL |
| B2.1.33 81 26.68 |  | Backfilling & Warrning Tape | 2d | 2026-12-08 | 2026-12-09 | B2.1.33 81 26.67, B2.1.33 81 26.59 |  | 66.32d | 0d | Labor [46.78 h]; Foreman [23.39 h]; Operator [93.55 h]; Surveyor [23.39 h]; Surveyor Helper [23.39 h]; Loader [24 h]; Water Tanker [24 h]; Dump Truck [24 h]; Plate Compactor [24 h]; Roller Compactor [24 h]; (4*32mm) HDPE ducts [5.13] | 1,099.7 |  | 0.000169743608400202 | Cons. | Z2 | Telecom | Cons | DCT&MNH | allElec | SUB.C | Commrce | TEL |
|  | Manholes | **Manholes** |  | 2026-11-08 | 2026-11-14 |  |  |  |  |  |  |  |  |  |  |  |  |  |  |  |  |  |
|  | Manhole Type 1 | **Manhole Type 1** |  | 2026-11-08 | 2026-11-14 |  |  |  |  |  |  |  |  |  |  |  |  |  |  |  |  |  |
| B2.31 23 00.603 |  | Excavation | 2d | 2026-11-08 | 2026-11-09 | B2.1.33 81 26.66 SS |  | 33.32d | 0d | Labor [31.18 h]; Foreman [15.59 h]; Operator [31.18 h]; Surveyor [15.59 h]; Surveyor Helper [15.59 h]; Excavator (With Bucket) [16 h]; Water Tanker [16 h]; Dump Truck [16 h]; Plate Compactor [16 h]; Manhole Type 1 [1.24] | 8,766.4 |  | 0.00167335317103356 | Cons. | Z2 | Telecom | Cons | DCT&MNH | allElec | SUB.C | Commrce | TEL |
| B2.33 71 00.214 |  | Manhole Installation | 2d | 2026-11-10 | 2026-11-11 | B2.31 23 00.603 |  | 33.32d | 0d | Labor [31.18 h]; Laboratory Officer [15.59 h]; Carpenter [15.59 h]; Steelfixer [15.59 h]; Mason [15.59 h]; Surveyor [15.59 h]; Surveyor Helper [15.59 h]; Manhole Type 1 [3.72] | 26,299.19 |  | 0.00502005951310069 | Cons. | Z2 | Telecom | Cons | DCT&MNH | allElec | SUB.C | Commrce | TEL |
| B2.33 71 00.215 |  | Backfilling & Warrning Tape | 2d | 2026-11-12 | 2026-11-14 | B2.33 71 00.214 |  | 33.32d | 0d | Labor [31.18 h]; Foreman [15.59 h]; Operator [62.37 h]; Surveyor [15.59 h]; Surveyor Helper [15.59 h]; Loader [16 h]; Water Tanker [16 h]; Dump Truck [16 h]; Plate Compactor [16 h]; Roller Compactor [16 h]; Manhole Type 1 [1.24] | 8,766.4 |  | 0.00167335317103356 | Cons. | Z2 | Telecom | Cons | DCT&MNH | allElec | SUB.C | Commrce | TEL |
|  | Manhole Type 2 | **Manhole Type 2** |  | 2026-11-08 | 2026-11-14 |  |  |  |  |  |  |  |  |  |  |  |  |  |  |  |  |  |
| B2.31 23 00.604 |  | Excavation | 2d | 2026-11-08 | 2026-11-09 | B2.31 23 00.603 SS |  | 33.32d | 0d | Labor [31.18 h]; Foreman [15.59 h]; Operator [31.18 h]; Surveyor [15.59 h]; Surveyor Helper [15.59 h]; Excavator (With Bucket) [16 h]; Water Tanker [16 h]; Dump Truck [16 h]; Plate Compactor [16 h]; Manhole Type 2 [0.52] | 3,287.69 |  | 0.000634453248743172 | Cons. | Z2 | Telecom | Cons | DCT&MNH | allElec | SUB.C | Commrce | TEL |
| B2.33 71 00.216 |  | Manhole Installation | 2d | 2026-11-10 | 2026-11-11 | B2.31 23 00.604 |  | 87.32d | 0d | Labor [31.18 h]; Laboratory Officer [15.59 h]; Carpenter [15.59 h]; Steelfixer [15.59 h]; Mason [15.59 h]; Surveyor [15.59 h]; Surveyor Helper [15.59 h]; Manhole Type 2 [1.56] | 9,863.09 |  | 0.00190336462403523 | Cons. | Z2 | Telecom | Cons | DCT&MNH | allElec | SUB.C | Commrce | TEL |
| B2.33 71 00.217 |  | Backfilling & Warrning Tape | 2d | 2026-11-12 | 2026-11-14 | B2.33 71 00.216 |  | 87.32d | 0d | Labor [31.18 h]; Foreman [15.59 h]; Operator [62.37 h]; Surveyor [15.59 h]; Surveyor Helper [15.59 h]; Loader [16 h]; Water Tanker [16 h]; Dump Truck [16 h]; Plate Compactor [16 h]; Roller Compactor [16 h]; Manhole Type 2 [0.52] | 3,287.69 |  | 0.000634453248743172 | Cons. | Z2 | Telecom | Cons | DCT&MNH | allElec | SUB.C | Commrce | TEL |
|  | Crossing Ducts | **Road Crossing Ducts** |  | 2026-11-10 | 2026-11-16 |  |  |  |  |  |  |  |  |  |  |  |  |  |  |  |  |  |
|  | 1 | **Size (6*50mm) HDPE** |  | 2026-11-10 | 2026-11-16 |  |  |  |  |  |  |  |  |  |  |  |  |  |  |  |  |  |
| B2.31 23 00.605 |  | Excavation | 2d | 2026-11-10 | 2026-11-11 | B2.31 23 00.604, B2.1.33 81 26.66 |  | 33.32d | 0d | Labor [31.18 h]; Foreman [15.59 h]; Operator [31.18 h]; Surveyor [15.59 h]; Surveyor Helper [15.59 h]; Excavator (With Bucket) [16 h]; Water Tanker [16 h]; Dump Truck [16 h]; Plate Compactor [16 h]; Road crossing ducts, (6*50mm) HDPE [7.13] | 2,221.93 |  | 0.000381434848303997 | Cons. | Z2 | Telecom | Cons | DCT&MNH | allElec | SUB.C | Commrce | TEL |
| B2.33 71 00.218 |  | Shuttering, Steel Fixing Incl. UPVC Pipe & Conc. Cast | 2d | 2026-11-12 | 2026-11-14 | B2.31 23 00.605 |  | 33.32d | 0d | Labor [46.78 h]; Laboratory Officer [23.39 h]; Carpenter [23.39 h]; Steelfixer [23.39 h]; Mason [23.39 h]; Surveyor [23.39 h]; Surveyor Helper [23.39 h]; Road crossing ducts, (6*50mm) HDPE [21.37] | 6,660.61 |  | 0.00114341541939146 | Cons. | Z2 | Telecom | Cons | DCT&MNH | allElec | SUB.C | Commrce | TEL |
| B2.33 71 00.219 |  | Backfilling & Warrning Tape | 2d | 2026-11-15 | 2026-11-16 | B2.33 71 00.218, B2.1.33 81 26.65, B2.33 71 00.215 |  | 33.32d | 0d | Labor [46.78 h]; Foreman [23.39 h]; Operator [93.55 h]; Surveyor [23.39 h]; Surveyor Helper [23.39 h]; Loader [24 h]; Water Tanker [24 h]; Dump Truck [24 h]; Plate Compactor [24 h]; Roller Compactor [24 h]; Road crossing ducts, (6*50mm) HDPE [7.13] | 2,221.93 |  | 0.000381434848303997 | Cons. | Z2 | Telecom | Cons | DCT&MNH | allElec | SUB.C | Commrce | TEL |
|  | Earth & Road Works | **Earth & Road Works** |  | 2025-12-07 | 2026-12-30 |  |  |  |  |  |  |  |  |  |  |  |  |  |  |  |  |  |
|  | Earth Works | **Earth Works** |  | 2025-12-07 | 2026-04-07 |  |  |  |  |  |  |  |  |  |  |  |  |  |  |  |  |  |
| B1.2.31 23 16.01.3 |  | Roadway Excavation | 3d | 2025-12-07 A | 2025-12-10 A | DMM2-Eng-MS-78 | 100% |  |  | Roadway Excavation for cuttings (all types of soil) [18609.4]; Labor [28.35 h]; Foreman [14.17 h]; Operator [28.35 h]; Surveyor [14.17 h]; Surveyor Helper [14.17 h]; Excavator (With Bucket) [16 h]; Water Tanker [16 h]; Dump Truck [16 h] | 277,763.62 | 277,763.62 | 3.3918352306814E-005 | Cons. | Z2 | Roads | Cons |  |  |  | Commrce |  |
| B1.2.31 23 23.01.3 |  | Embankment Backfiling | 84.84d | 2025-12-16 A | 2026-04-07 A | B1.2.31 23 16.01.3 | 100% |  |  | Embankment backfiling [10287.1]; Labor [42.52 h]; Foreman [21.26 h]; Operator [42.52 h]; Surveyor [21.26 h]; Surveyor Helper [21.26 h]; Loader [24 h]; Water Tanker [24 h]; Dump Truck [24 h]; Plate Compactor [24 h]; Roller Compactor [24 h] | 279,994.42 | 279,994.42 | 0.0371604908053315 | Cons. | Z2 | Roads | Cons |  |  |  | Commrce |  |

| ID | WBS | Activity | Duration | Start | Finish | Predecessors | Complete | Total float | Free float | Resources | Cost | Actual cost | Weight % | DMM2 Weekly Progress | DMM2 Zones | Networks & Stations | DMM2 Phases | Networks Components | Dmm2 Roads | Yellow Sheet |
| --- | --- | --- | --- | --- | --- | --- | --- | --- | --- | --- | --- | --- | --- | --- | --- | --- | --- | --- | --- | --- |
|  | Earth Layers | **Earth Layers** |  | 2026-04-29 | 2026-10-22 |  |  |  |  |  |  |  |  |  |  |  |  |  |  |  |
| B1.2.32 11 13.01.3 |  | Subgrade (71.00% Completed) | 115.97d | 2026-04-29 A | 2026-09-15 A | B1.2.31 23 23.01.3 | 100% |  |  | Subgrade [965.21]; Labor [22.14 h]; Foreman [11.07 h]; Operator [22.14 h]; Surveyor [11.07 h]; Surveyor Helper [11.07 h]; Grader [11.36 h]; Loader [11.36 h]; Water Tanker [11.36 h]; Dump Truck [11.36 h]; Plate Compactor [11.36 h]; Roller Compactor [11.36 h] | 28,813.34 | 28,813.34 | 0.0237974761733525 | Cons. | Z2 | Roads | Cons | Roads | Commrce | Sub |
| B1.2.32 11 23.01.3 |  | Aggregate Base Course (28.00% Completed) | 71.16d | 2026-06-24 A | 2026-09-15 A | B1.2.32 11 13.01.3 SS | 100% |  |  | Aggregate base course [253.76]; Labor [8.73 h]; Foreman [4.37 h]; Operator [8.73 h]; Surveyor [4.37 h]; Surveyor Helper [4.37 h]; Grader [4.48 h]; Loader [4.48 h]; Water Tanker [4.48 h]; Dump Truck [4.48 h]; Plate Compactor [4.48 h]; Roller Compactor [4.48 h] | 22,057.5 | 22,057.5 | 0.0448524875905426 | Cons. | Z2 | Roads | Cons | Roads | Commrce | Agg |
| B1.2.32 11 13.01.3_R |  | Subgrade(Rem) | 2d | 2026-10-21 | 2026-10-22 | B1.2.31 23 23.01.3, B1.2.32 11 13.01.3 |  | 49.88d | 0d | Subgrade [394.24]; Labor [9.04 h]; Foreman [4.52 h]; Operator [9.04 h]; Surveyor [4.52 h]; Surveyor Helper [4.52 h]; Grader [4.64 h]; Loader [4.64 h]; Water Tanker [4.64 h]; Dump Truck [4.64 h]; Plate Compactor [4.64 h]; Roller Compactor [4.64 h] | 11,768.83 |  | 0.0237974761733525 | Cons. | Z2 | Roads | Cons | Roads | Commrce | Sub |
| B1.2.32 11 23.01.3_R |  | Aggregate Base Course(Rem) | 1.44d | 2026-10-21 | 2026-10-22 | B1.2.32 11 13.01.3_R SS, B1.2.32 11 23.01.3 |  | 49.88d | 0d | Aggregate base course [652.53]; Labor [22.45 h]; Foreman [11.23 h]; Operator [22.45 h]; Surveyor [11.23 h]; Surveyor Helper [11.23 h]; Grader [11.52 h]; Loader [11.52 h]; Water Tanker [11.52 h]; Dump Truck [11.52 h]; Plate Compactor [11.52 h]; Roller Compactor [11.52 h] | 56,719.29 |  | 0.0448524875905426 | Cons. | Z2 | Roads | Cons | Roads | Commrce | Agg |
|  | Interlock | **Interlock** |  | 2026-12-28 | 2026-12-30 |  |  |  |  |  |  |  |  |  |  |  |  |  |  |  |
| B1.2.32 14 13.13.3 |  | 60mm thick - Interlocking Block Pavers | 2d | 2026-12-28 | 2026-12-30 | B1.2.32 14 13.13.7 |  | 50.91d | 0d | 60mm thick - Interlocking block pavers for sidewalks and medians [323.55]; Labor [93.55 h]; Foreman [46.78 h]; Mason [46.78 h]; Operator [93.55 h]; JCB [48 h] | 21,589.81 |  | 0.0119860905917638 | Cons. | Z2 | Roads | Cons | Roads | Commrce |  |
|  | Curbstone | **Curbstone** |  | 2026-12-08 | 2026-12-20 |  |  |  |  |  |  |  |  |  |  |  |  |  |  |  |
|  | Pre Install | **Pre-Installation** |  | 2026-12-08 | 2026-12-15 |  |  |  |  |  |  |  |  |  |  |  |  |  |  |  |
| B2.31 23 00.61 |  | Excavation | 2d | 2026-12-08 | 2026-12-10 | B2.31 23 00.131 SS |  | 18d | 0d | Curb Stone, Type K1 [42.59]; Edge Curb, Type K4 [38.34]; Labor [31.18 h]; Foreman [15.59 h]; Operator [31.18 h]; Surveyor [15.59 h]; Surveyor Helper [15.59 h]; JCB [16 h]; Water Tanker [16 h]; Dump Truck [16 h]; Plate Compactor [16 h] | 6,111.34 |  | 0.00349133906952838 | Cons. | Z2 | Roads | Cons | Roads | Commrce |  |
| B1.2.32 14 13.13.23 |  | PCC | 2d | 2026-12-10 | 2026-12-13 | B2.31 23 00.61 |  | 60d | 0d | Curb Stone, Type K1 [42.59]; Edge Curb, Type K4 [38.34]; Labor [93.55 h]; Mason [46.78 h]; Surveyor [46.78 h]; Surveyor Helper [46.78 h] | 6,111.34 |  | 0.00349133906952838 | Cons. | Z2 | Roads | Cons | Roads | Commrce |  |
| 32 16 13.003 |  | Haunching | 2d | 2026-12-13 | 2026-12-15 | B1.2.32 14 13.13.23 |  | 60d | 0d | Curb Stone, Type K1 [42.59]; Edge Curb, Type K4 [38.34]; Labor [93.55 h]; Carpenter [46.78 h]; Mason [46.78 h]; Surveyor [46.78 h]; Surveyor Helper [46.78 h] | 6,111.34 |  | 0.00349133906952838 | Cons. | Z2 | Roads | Cons | Roads | Commrce |  |
|  | Installation | **Installation** |  | 2026-12-15 | 2026-12-17 |  |  |  |  |  |  |  |  |  |  |  |  |  |  |  |
| B1.2.32 16.13.01.3 |  | Curb Stone, Type K1 | 2d | 2026-12-15 | 2026-12-17 | 32 16 13.003 |  | 60d | 0d | Curb Stone, Type K1 [127.77]; Labor [93.55 h]; Foreman [46.78 h]; Mason [46.78 h]; Operator [93.55 h]; Surveyor [46.78 h]; Surveyor Helper [46.78 h]; JCB [48 h] | 9,647.9 |  | 0.00569046130827775 | Cons. | Z2 | Roads | Cons | Roads | Commrce |  |
| B1.2.32 16.13.03.3 |  | Edge Curb, Type K4 | 2d | 2026-12-15 | 2026-12-17 | 32 16 13.003 |  | 60d | 0d | Edge Curb, Type K4 [115.04]; Labor [93.55 h]; Foreman [46.78 h]; Mason [46.78 h]; Operator [93.55 h]; Surveyor [46.78 h]; Surveyor Helper [46.78 h]; JCB [48 h] | 8,686.36 |  | 0.00478366254857139 | Cons. | Z2 | Roads | Cons | Roads | Commrce |  |
|  | Finishing | **Finishing** |  | 2026-12-17 | 2026-12-20 |  |  |  |  |  |  |  |  |  |  |  |  |  |  |  |
| 32 16 13.03 |  | Finishing, Fareface | 2d | 2026-12-17 | 2026-12-20 | B1.2.32 16.13.01.3, B1.2.32 16.13.03.3, 10 14 53.07 |  | 60d | 9.09d | Curb Stone, Type K1 [28.39]; Edge Curb, Type K4 [25.56]; Labor [93.55 h]; Mason [46.78 h] | 4,074.01 |  | 0.00232743284063047 | Cons. | Z2 | Roads | Cons | Roads | Commrce |  |
|  | Asphalt Layers | **Asphalt Layers** |  | 2026-10-22 | 2026-12-22 |  |  |  |  |  |  |  |  |  |  |  |  |  |  |  |
| B1.2.32 11 26.01.3 |  | Bituminous Base Course including Prime Coat (MC1) and tack coat (RC2) | 2d | 2026-10-22 | 2026-10-25 | B1.2.32 11 23.01.3_R |  | 49.88d | 0d | Bituminous base course(Grading I - Class A) [620.97]; Labor [31.18 h]; Foreman [15.59 h]; Operator [31.18 h]; Surveyor [15.59 h]; Surveyor Helper [15.59 h]; Dump Truck [16 h]; Roller Compactor [16 h]; MC1/RC2 Sprayer [16 h] | 341,301.48 |  | 0.188274503436742 | Cons. | Z2 | Roads | Cons | Roads | Commrce | BBC |
| B1.2.32 12 16.01.3 |  | Bituminous concrete Wearing Course, including tack coat (RC2) | 5d | 2026-12-16 | 2026-12-22 | B1.2.32 11 26.01.3, B1.2.32 12 16.01.5 |  | 5d | 0d | Bituminous concrete wearing course, after compaction(Grading I - Class A), including tack coat (RC2) [227.21]; Labor [31.18 h]; Foreman [15.59 h]; Operator [31.18 h]; Surveyor [15.59 h]; Surveyor Helper [15.59 h]; Dump Truck [16 h]; Roller Compactor [16 h]; MC1/RC2 Sprayer [16 h] | 134,059.71 |  | 0.0739138373459857 | Cons. | Z2 | Roads | Cons | Roads | Commrce | BWC |
|  | Pavement Marking | **Pavement Marking** |  | 2026-12-22 | 2026-12-27 |  |  |  |  |  |  |  |  |  |  |  |  |  |  |  |
| B1.2.32 17 23.02.3 |  | Retroreflective Thermoplastic Yellow, Traffic lines | 2d | 2026-12-22 | 2026-12-24 | B1.2.32 12 16.01.3 |  | 54d | 0d | Retroreflective Thermoplastic Yellow, Traffic lines [36.92]; Labor [31.18 h]; Mason [15.59 h]; Road Marking Machine [16 h] | 1,102 |  | 0.000554027881313372 | Cons. | Z2 | Roads | Cons | Roads | Commrce |  |
| B1.2.32 17 23.01.3 |  | Retroreflective Thermoplastic White Traffic lines | 2d | 2026-12-24 | 2026-12-27 | B1.2.32 12 16.01.3, B1.2.32 17 23.02.3 |  | 54d | 3.09d | Retroreflective Thermoplastic White Traffic lines [77.02]; Labor [46.78 h]; Mason [23.39 h]; Road Marking Machine [24 h] | 2,299.24 |  | 0.00115593960088184 | Cons. | Z2 | Roads | Cons | Roads | Commrce |  |
|  | Traffic Signs | **Traffic Signs** |  | 2026-12-08 | 2026-12-24 |  |  |  |  |  |  |  |  |  |  |  |  |  |  |  |
|  | Pre Install | **Pre-Installation** |  | 2026-12-08 | 2026-12-13 |  |  |  |  |  |  |  |  |  |  |  |  |  |  |  |
| B2.31 23 00.71 |  | Excavation | 2d | 2026-12-08 | 2026-12-10 | B2.31 23 00.61 SS |  | 18d | 0d | Traffic signs, ground mounted, 1 Sheet Alumenium, (breakaway) Single post [0.56]; Traffic signs, ground mounted, 2 Sheets Alumenium, (breakaway) Single post [0.5]; Ground mounted, 1 Sheet Alumenium powder coated UV printed, Single post [0.39]; Labor [31.18 h]; Foreman [15.59 h]; Operator [31.18 h]; Surveyor [15.59 h]; Surveyor Helper [15.59 h]; JCB [16 h]; Water Tanker [16 h]; Dump Truck [16 h]; Plate Compactor [16 h] | 1,828.84 |  | 0.00091944640903117 | Cons. | Z2 | Roads | Cons | Roads | Commrce |  |
| 10 14 53.03 |  | Foundation | 2d | 2026-12-10 | 2026-12-13 | B2.31 23 00.71 |  | 43d | 8d | Traffic signs, ground mounted, 1 Sheet Alumenium, (breakaway) Single post [0.56]; Traffic signs, ground mounted, 2 Sheets Alumenium, (breakaway) Single post [0.5]; Ground mounted, 1 Sheet Alumenium powder coated UV printed, Single post [0.39]; Labor [93.55 h]; Carpenter [46.78 h]; Steelfixer [46.78 h]; Mason [46.78 h]; Surveyor [46.78 h]; Surveyor Helper [46.78 h] | 1,828.84 |  | 0.00091944640903117 | Cons. | Z2 | Roads | Cons | Roads | Commrce |  |

| ID | WBS | Activity | Duration | Start | Finish | Predecessors | Complete | Total float | Free float | Resources | Cost | Actual cost | Weight % | DMM2 Weekly Progress | DMM2 Zones | Networks & Stations | DMM2 Phases | Networks Components | Dmm2 Roads | Yellow Sheet | UNASCO | Subcontractors works |
| --- | --- | --- | --- | --- | --- | --- | --- | --- | --- | --- | --- | --- | --- | --- | --- | --- | --- | --- | --- | --- | --- | --- |
|  | Installation | **Installation** |  | 2026-12-22 | 2026-12-24 |  |  |  |  |  |  |  |  |  |  |  |  |  |  |  |  |  |
| B1.2.10 14 14.01.3 |  | Ground mounted, 1 Sheet Alumenium, Single post | 2d | 2026-12-22 | 2026-12-24 | 10 14 53.03, B1.2.10 14 53.023 FF |  | 35d | 0d | Ground mounted, 1 Sheet Alumenium powder coated UV printed, Single post [0.79]; Labor [93.55 h]; Foreman [46.78 h]; Operator [93.55 h]; JCB [48 h] | 876.81 |  | 0.000440817034925952 | Cons. | Z2 | Roads | Cons | Roads | Commrce |  |  |  |
| B1.2.10 14 53.013 |  | 1 Sheet Alumenium, Single post | 2d | 2026-12-22 | 2026-12-24 | 10 14 53.03, B1.2.32 12 16.01.3 |  | 35d | 0d | Traffic signs, ground mounted, 1 Sheet Alumenium, (breakaway) Single post [19.14]; Labor [93.55 h]; Foreman [46.78 h]; Operator [93.55 h]; JCB [48 h] | 21,359.11 |  | 0.0107382837254909 | Cons. | Z2 | Roads | Cons | Roads | Commrce |  |  |  |
| B1.2.10 14 53.023 |  | 2 Sheet Alumenium, Single post | 2d | 2026-12-22 | 2026-12-24 | 10 14 53.03, B1.2.10 14 53.013 FF |  | 35d | 0d | Traffic signs, ground mounted, 2 Sheets Alumenium, (breakaway) Single post [1.69]; Labor [93.55 h]; Foreman [46.78 h]; Operator [93.55 h]; JCB [48 h] | 2,590.92 |  | 0.00130258342211481 | Cons. | Z2 | Roads | Cons | Roads | Commrce |  |  |  |
|  | Landscape | **Landscape** |  | 2026-12-10 | 2026-12-29 |  |  |  |  |  |  |  |  |  |  |  |  |  |  |  |  |  |
|  | Gates | **Gates** |  | 2026-12-10 | 2026-12-29 |  |  |  |  |  |  |  |  |  |  |  |  |  |  |  |  |  |
|  | Size (6.1x 2.7)m | **Size (6.1x 2.7)m** |  | 2026-12-10 | 2026-12-29 |  |  |  |  |  |  |  |  |  |  |  |  |  |  |  |  |  |
| B7.32 93 43.04.63 |  | Earthwork | 5d | 2026-12-10 | 2026-12-16 | B2.31 23 00.71 |  | 18d | 0d | Labor [93.55 h]; Foreman [46.78 h]; Operator [93.55 h]; Surveyor [46.78 h]; Surveyor Helper [46.78 h]; Excavator (With Bucket) [48 h]; Water Tanker [48 h]; Dump Truck [48 h]; Plate Compactor [48 h]; Size (6.1x 2.7)m [0.3] | 6,298.96 |  | 0.00316680140474643 | Cons. | Z2 | Landscp | Cons | Fncs&Gt | Commrce | Mod.Fns |  |  |
| B7.32 93 43.04.64 |  | Foundation | 3d | 2026-12-16 | 2026-12-20 | B7.32 93 43.04.63 |  | 18d | 5d | Labor [93.55 h]; Laboratory Officer [46.78 h]; Carpenter [46.78 h]; Steelfixer [46.78 h]; Mason [46.78 h]; Surveyor [46.78 h]; Surveyor Helper [46.78 h]; Size (6.1x 2.7)m [0.3] | 6,298.96 |  | 0.00316680140474643 | Cons. | Z2 | Landscp | Cons | Fncs&Gt | Commrce | Mod.Fns |  |  |
| B7.32 93 43.04.65 |  | Gate Installation | 3d | 2026-12-26 | 2026-12-29 | B7.32 93 43.04.64, B7.32 93 43.04.52 |  | 13d | 12d | Labor [93.55 h]; Foreman [46.78 h]; Welder [46.78 h]; Mason [46.78 h]; Operator [93.55 h]; Boom Truck [48 h]; Welding Machine [48 h]; Size (6.1x 2.7)m [1.4] | 29,395.16 |  | 0.0147784065554834 | Cons. | Z2 | Landscp | Cons | Fncs&Gt | Commrce | Mod.Fns |  |  |
|  | Size (5.5x 2.7)m | **Size (5.5x 2.7)m** |  | 2026-12-10 | 2026-12-23 |  |  |  |  |  |  |  |  |  |  |  |  |  |  |  |  |  |
| B7.32 93 43.04.66 |  | Earthwork | 5d | 2026-12-10 | 2026-12-16 | B7.32 93 43.04.63 FF |  | 18d | 0d | Labor [93.55 h]; Foreman [46.78 h]; Operator [93.55 h]; Surveyor [46.78 h]; Surveyor Helper [46.78 h]; Excavator (With Bucket) [48 h]; Water Tanker [48 h]; Dump Truck [48 h]; Plate Compactor [48 h]; Size (5.5x 2.7)m [0.3] | 5,679.45 |  | 0.00285533966800512 | Cons. | Z2 | Landscp | Cons | Fncs&Gt | Commrce | Mod.Fns |  |  |
| B7.32 93 43.04.67 |  | Foundation | 3d | 2026-12-16 | 2026-12-20 | B7.32 93 43.04.66 |  | 18d | 0d | Labor [93.55 h]; Laboratory Officer [46.78 h]; Carpenter [46.78 h]; Steelfixer [46.78 h]; Mason [46.78 h]; Surveyor [46.78 h]; Surveyor Helper [46.78 h]; Size (5.5x 2.7)m [0.3] | 5,679.45 |  | 0.00285533966800512 | Cons. | Z2 | Landscp | Cons | Fncs&Gt | Commrce | Mod.Fns |  |  |
| B7.32 93 43.04.68 |  | Gate Installation | 3d | 2026-12-20 | 2026-12-23 | B7.32 93 43.04.67 |  | 18d | 17d | Labor [93.55 h]; Foreman [46.78 h]; Welder [46.78 h]; Mason [46.78 h]; Operator [93.55 h]; Boom Truck [48 h]; Welding Machine [48 h]; Size (5.5x 2.7)m [1.4] | 26,504.08 |  | 0.0133249184506906 | Cons. | Z2 | Landscp | Cons | Fncs&Gt | Commrce | Mod.Fns |  |  |
|  | Size (4.85x 2.7)m | **Size (4.85x 2.7)m** |  | 2026-12-16 | 2026-12-27 |  |  |  |  |  |  |  |  |  |  |  |  |  |  |  |  |  |
| B7.32 93 43.04.69 |  | Earthwork | 3d | 2026-12-16 | 2026-12-20 | B7.32 93 43.04.66 |  | 20d | 0d | Labor [93.55 h]; Foreman [46.78 h]; Operator [93.55 h]; Surveyor [46.78 h]; Surveyor Helper [46.78 h]; Excavator (With Bucket) [48 h]; Water Tanker [48 h]; Dump Truck [48 h]; Plate Compactor [48 h]; Size (4.85x 2.7)m [0.15] | 2,276.43 |  | 0.00114447660818015 | Cons. | Z2 | Landscp | Cons | Fncs&Gt | Commrce | Mod.Fns |  |  |
| B7.32 93 43.04.70 |  | Foundation | 3d | 2026-12-20 | 2026-12-23 | B7.32 93 43.04.69 |  | 20d | 0d | Labor [93.55 h]; Laboratory Officer [46.78 h]; Carpenter [46.78 h]; Steelfixer [46.78 h]; Mason [46.78 h]; Surveyor [46.78 h]; Surveyor Helper [46.78 h]; Size (4.85x 2.7)m [0.15] | 2,276.43 |  | 0.00114447660818015 | Cons. | Z2 | Landscp | Cons | Fncs&Gt | Commrce | Mod.Fns |  |  |
| B7.32 93 43.04.71 |  | Gate Installation | 3d | 2026-12-23 | 2026-12-27 | B7.32 93 43.04.70 |  | 20d |  | Labor [93.55 h]; Foreman [46.78 h]; Welder [46.78 h]; Mason [46.78 h]; Operator [93.55 h]; Boom Truck [48 h]; Welding Machine [48 h]; Size (4.85x 2.7)m [0.7] | 10,623.39 |  | 0.00534090452545934 | Cons. | Z2 | Landscp | Cons | Fncs&Gt | Commrce | Mod.Fns |  |  |
|  | Parking Roads | **Parking Roads** |  | 2025-11-29 | 2026-12-30 |  |  |  |  |  |  |  |  |  |  |  |  |  |  |  |  |  |
|  | Wet Networks | **Wet Networks** |  | 2026-07-22 | 2026-11-12 |  |  |  |  |  |  |  |  |  |  |  |  |  |  |  |  |  |
|  | Stormwater Network | **Stormwater Network** |  | 2026-07-22 | 2026-10-29 |  |  |  |  |  |  |  |  |  |  |  |  |  |  |  |  |  |
|  | GRP | **GRP** |  | 2026-08-10 | 2026-10-29 |  |  |  |  |  |  |  |  |  |  |  |  |  |  |  |  |  |
|  | ?4002 | **?500** |  | 2026-08-19 | 2026-10-29 |  |  |  |  |  |  |  |  |  |  |  |  |  |  |  |  |  |
|  | 3 | **Depth From 1.5m to 2.5m** |  | 2026-08-19 | 2026-10-29 |  |  |  |  |  |  |  |  |  |  |  |  |  |  |  |  |  |
| B6.33 42 11.03-11 |  | Excavation (59.54% Completed) | 24d | 2026-08-19 A | 2026-09-15 A | B6.33 05 39.01.3127 | 100% |  |  | Labor [18.57 h]; Foreman [9.28 h]; Operator [18.57 h]; Surveyor [9.28 h]; Surveyor Helper [9.28 h]; Excavator (With Bucket) [9.53 h]; Water Tanker [9.53 h]; Dump Truck [9.53 h]; Plate Compactor [9.53 h]; 1.51m - 2.5m [7.64] | 4,422.15 | 4,422.15 | 0.00678741471010152 | Cons. | Z2 | Storm | Cons | GRPs | Prkng | Strm | CS.UNSC | SUB.C |
| B6.33 42 11.03-14 |  | Sand Bedding (59.54% Completed) | 22d | 2026-08-22 A | 2026-09-15 A | B6.33 42 11.03-11 FF | 100% |  |  | Labor [18.57 h]; Foreman [9.28 h]; Operator [37.13 h]; Surveyor [9.28 h]; Surveyor Helper [9.28 h]; Loader [9.53 h]; Water Tanker [9.53 h]; Dump Truck [9.53 h]; Plate Compactor [9.53 h]; 1.51m - 2.5m [1.91] | 1,105 | 1,105 | 0.00169602876081295 | Cons. | Z2 | Storm | Cons | GRPs | Prkng | Strm | CS.UNSC | SUB.C |
| B6.33 42 11.03-17 |  | Pipe Laying (59.54% Completed) | 20d | 2026-08-24 A | 2026-09-15 A | B6.33 42 11.03-14 FF | 100% |  |  | Labor [18.57 h]; Foreman [9.28 h]; Plumber Helper [9.28 h]; Plumber [9.28 h]; Operator [9.28 h]; Surveyor [9.28 h]; Surveyor Helper [9.28 h]; Mobile Crane [9.53 h]; 1.51m - 2.5m [17.2] | 9,949.3 | 9,949.3 | 0.0152708581810161 | Cons. | Z2 | Storm | Cons | GRPs | Prkng | Strm | CS.UNSC | SUB.C |
| B6.33 42 11.03-113 |  | Backfilling & Warrning Tape (59.54% Completed) | 19d | 2026-08-25 A | 2026-09-15 A | B6.33 42 11.05-1.57 | 100% |  |  | Labor [46.41 h]; Foreman [23.21 h]; Operator [92.83 h]; Surveyor [23.21 h]; Surveyor Helper [23.21 h]; Loader [23.81 h]; Water Tanker [23.81 h]; Dump Truck [23.81 h]; Plate Compactor [23.81 h]; Roller Compactor [23.81 h]; 1.51m - 2.5m [3.82] | 2,211.07 | 2,211.07 | 0.00339370735505079 | Cons. | Z2 | Storm | Cons | GRPs | Prkng | Strm | CS.UNSC | SUB.C |
| B6.33 42 11.03-11_R |  | Excavation(Rem) | 2.28d | 2026-10-21 | 2026-10-24 | B6.33 05 39.01.3127, B6.33 42 11.03-11 |  | 95.04d | 0d | Labor [12.62 h]; Foreman [6.31 h]; Operator [12.62 h]; Surveyor [6.31 h]; Surveyor Helper [6.31 h]; Excavator (With Bucket) [6.47 h]; Water Tanker [6.47 h]; Dump Truck [6.47 h]; Plate Compactor [6.47 h]; 1.51m - 2.5m [5.19] | 3,005.66 |  | 0.00678741471010152 | Cons. | Z2 | Storm | Cons | GRPs | Prkng | Strm | CS.UNSC | SUB.C |
| B6.33 42 11.03-14_R |  | Sand Bedding(Rem) | 2.28d | 2026-10-21 | 2026-10-24 | B6.33 42 11.03-11_R FF, B6.33 42 11.03-14 |  | 106.04d | 0d | Labor [12.62 h]; Foreman [6.31 h]; Operator [25.24 h]; Surveyor [6.31 h]; Surveyor Helper [6.31 h]; Loader [6.47 h]; Water Tanker [6.47 h]; Dump Truck [6.47 h]; Plate Compactor [6.47 h]; 1.51m - 2.5m [1.3] | 751.05 |  | 0.00169602876081295 | Cons. | Z2 | Storm | Cons | GRPs | Prkng | Strm | CS.UNSC | SUB.C |
| B6.33 42 11.03-17_R |  | Pipe Laying(Rem) | 2.28d | 2026-10-21 | 2026-10-24 | B6.33 42 11.03-14_R FF, B6.33 42 11.03-17 |  | 106.04d | 0d | Labor [12.62 h]; Foreman [6.31 h]; Plumber Helper [6.31 h]; Plumber [6.31 h]; Operator [6.31 h]; Surveyor [6.31 h]; Surveyor Helper [6.31 h]; Mobile Crane [6.47 h]; 1.51m - 2.5m [11.69] | 6,762.38 |  | 0.0152708581810161 | Cons. | Z2 | Storm | Cons | GRPs | Prkng | Strm | CS.UNSC | SUB.C |
| B6.33 42 11.03-110 |  | Embedment & Test | 5d | 2026-10-24 | 2026-10-29 | B6.33 42 11.03-17_R |  | 106.04d | 0d | Labor [62.37 h]; Foreman [31.18 h]; Plumber Helper [31.18 h]; Plumber [31.18 h]; Operator [62.37 h]; Surveyor [31.18 h]; Surveyor Helper [31.18 h]; Loader [32 h]; Water Tanker [32 h]; Dump Truck [32 h]; Plate Compactor [32 h]; Roller Compactor [32 h]; 1.51m - 2.5m [12.84] | 7,427.81 |  | 0.00678741471010152 | Cons. | Z2 | Storm | Cons | GRPs | Prkng | Strm | CS.UNSC | SUB.C |
| B6.33 42 11.03-113_R |  | Backfilling & Warrning Tape(Rem) | 3.3d | 2026-10-25 | 2026-10-29 | B6.33 42 11.03-110 FF, B6.33 42 11.05-1.57, B6.33 42 11.03-113 |  | 106.04d |  | Labor [31.55 h]; Foreman [15.77 h]; Operator [63.09 h]; Surveyor [15.77 h]; Surveyor Helper [15.77 h]; Loader [16.19 h]; Water Tanker [16.19 h]; Dump Truck [16.19 h]; Plate Compactor [16.19 h]; Roller Compactor [16.19 h]; 1.51m - 2.5m [2.6] | 1,502.83 |  | 0.00339370735505079 | Cons. | Z2 | Storm | Cons | GRPs | Prkng | Strm | CS.UNSC | SUB.C |

| ID | WBS | Activity | Duration | Start | Finish | Predecessors | Complete | Planned start | Planned finish | Total float | Free float | Resources | Cost | Actual cost | Weight % | DMM2 Weekly Progress | DMM2 Zones | Networks & Stations | DMM2 Phases | UNASCO | Networks Components | Subcontractors works | Dmm2 Roads | Yellow Sheet |
| --- | --- | --- | --- | --- | --- | --- | --- | --- | --- | --- | --- | --- | --- | --- | --- | --- | --- | --- | --- | --- | --- | --- | --- | --- |
|  | ?4001 | **?600** |  | 2026-08-10 | 2026-10-29 |  |  |  |  |  |  |  |  |  |  |  |  |  |  |  |  |  |  |  |
|  | 3 | **Depth From 1.5m to 2.5m** |  | 2026-08-10 | 2026-10-29 |  |  |  |  |  |  |  |  |  |  |  |  |  |  |  |  |  |  |  |
| B6.33 42 11.03-12 |  | Excavation (59.54% Completed) | 32d | 2026-08-10 A | 2026-09-15 A | B6.33 42 11.03-11 SS | 100% |  |  |  |  | Labor [18.57 h]; Foreman [9.28 h]; Operator [18.57 h]; Surveyor [9.28 h]; Surveyor Helper [9.28 h]; Excavator (With Bucket) [9.53 h]; Water Tanker [9.53 h]; Dump Truck [9.53 h]; Plate Compactor [9.53 h]; 1.51m - 2.5m [5.67] | 4,799.25 | 4,799.25 | 5.30950164986435E-005 | Cons. | Z2 | Storm | Cons | CS.UNSC | GRPs | SUB.C | Prkng | Strm |
| B6.33 42 11.03-15 |  | Sand Bedding (59.54% Completed) | 29d | 2026-08-13 A | 2026-09-15 A | B6.33 42 11.03-12 FF | 100% |  |  |  |  | Labor [18.57 h]; Foreman [9.28 h]; Operator [37.13 h]; Surveyor [9.28 h]; Surveyor Helper [9.28 h]; Loader [9.53 h]; Water Tanker [9.53 h]; Dump Truck [9.53 h]; Plate Compactor [9.53 h]; 1.51m - 2.5m [5.67] | 4,799.25 | 4,799.25 | 5.30950164986435E-005 | Cons. | Z2 | Storm | Cons | CS.UNSC | GRPs | SUB.C | Prkng | Strm |
| B6.33 42 11.03-18 |  | Pipe Laying (59.54% Completed) | 28d | 2026-08-15 A | 2026-09-15 A | B6.33 42 11.03-15 FF | 100% |  |  |  |  | Labor [18.57 h]; Foreman [9.28 h]; Plumber Helper [9.28 h]; Plumber [9.28 h]; Operator [9.28 h]; Surveyor [9.28 h]; Surveyor Helper [9.28 h]; Mobile Crane [9.53 h]; 1.51m - 2.5m [12.89] | 10,907.42 | 10,907.42 | 0.000120670801288806 | Cons. | Z2 | Storm | Cons | CS.UNSC | GRPs | SUB.C | Prkng | Strm |
| B6.33 42 11.03-114 |  | Backfilling & Warrning Tape (59.54% Completed) | 24d | 2026-08-19 A | 2026-09-15 A | B6.33 42 11.05-1.61 SS | 100% |  |  |  |  | Labor [46.41 h]; Foreman [23.21 h]; Operator [92.83 h]; Surveyor [23.21 h]; Surveyor Helper [23.21 h]; Loader [23.81 h]; Water Tanker [23.81 h]; Dump Truck [23.81 h]; Plate Compactor [23.81 h]; Roller Compactor [23.81 h]; 1.51m - 2.5m [2.84] | 2,399.63 | 2,399.63 | 2.65475082493218E-005 | Cons. | Z2 | Storm | Cons | CS.UNSC | GRPs | SUB.C | Prkng | Strm |
| B6.33 42 11.03-12_R |  | Excavation(Rem) | 2.28d | 2026-10-21 | 2026-10-24 | B6.33 42 11.03-11_R SS, B6.33 42 11.03-12 |  |  |  | 95.04d | 0d | Labor [12.62 h]; Foreman [6.31 h]; Operator [12.62 h]; Surveyor [6.31 h]; Surveyor Helper [6.31 h]; Excavator (With Bucket) [6.47 h]; Water Tanker [6.47 h]; Dump Truck [6.47 h]; Plate Compactor [6.47 h]; 1.51m - 2.5m [3.85] | 3,261.98 |  | 5.30950164986435E-005 | Cons. | Z2 | Storm | Cons | CS.UNSC | GRPs | SUB.C | Prkng | Strm |
| B6.33 42 11.03-15_R |  | Sand Bedding(Rem) | 2.28d | 2026-10-21 | 2026-10-24 | B6.33 42 11.03-12_R FF, B6.33 42 11.03-15 |  |  |  | 95.04d | 0d | Labor [12.62 h]; Foreman [6.31 h]; Operator [25.24 h]; Surveyor [6.31 h]; Surveyor Helper [6.31 h]; Loader [6.47 h]; Water Tanker [6.47 h]; Dump Truck [6.47 h]; Plate Compactor [6.47 h]; 1.51m - 2.5m [3.85] | 3,261.98 |  | 5.30950164986435E-005 | Cons. | Z2 | Storm | Cons | CS.UNSC | GRPs | SUB.C | Prkng | Strm |
| B6.33 42 11.03-18_R |  | Pipe Laying(Rem) | 2.28d | 2026-10-21 | 2026-10-24 | B6.33 42 11.03-15_R FF, B6.33 42 11.03-18 |  |  |  | 95.04d | 0d | Labor [12.62 h]; Foreman [6.31 h]; Plumber Helper [6.31 h]; Plumber [6.31 h]; Operator [6.31 h]; Surveyor [6.31 h]; Surveyor Helper [6.31 h]; Mobile Crane [6.47 h]; 1.51m - 2.5m [8.76] | 7,413.6 |  | 0.000120670801288806 | Cons. | Z2 | Storm | Cons | CS.UNSC | GRPs | SUB.C | Prkng | Strm |
| B6.33 42 11.03-111 |  | Embedment & Test | 5d | 2026-10-24 | 2026-10-29 | B6.33 42 11.03-18_R |  |  |  | 95.04d | 0d | Labor [62.37 h]; Foreman [31.18 h]; Plumber Helper [31.18 h]; Plumber [31.18 h]; Operator [62.37 h]; Surveyor [31.18 h]; Surveyor Helper [31.18 h]; Loader [32 h]; Water Tanker [32 h]; Dump Truck [32 h]; Plate Compactor [32 h]; Roller Compactor [32 h]; 1.51m - 2.5m [2.6] | 2,198.52 |  | 1.44804590450846E-005 | Cons. | Z2 | Storm | Cons | CS.UNSC | GRPs | SUB.C | Prkng | Strm |
| B6.33 42 11.03-114_R |  | Backfilling & Warrning Tape(Rem) | 3.12d | 2026-10-26 | 2026-10-29 | B6.33 42 11.03-111 FF, B6.33 42 11.05-1.61_R SS, B6.33 42 11.03-114 |  |  |  | 95.04d | 0d | Labor [31.55 h]; Foreman [15.77 h]; Operator [63.09 h]; Surveyor [15.77 h]; Surveyor Helper [15.77 h]; Loader [16.19 h]; Water Tanker [16.19 h]; Dump Truck [16.19 h]; Plate Compactor [16.19 h]; Roller Compactor [16.19 h]; 1.51m - 2.5m [1.93] | 1,630.99 |  | 2.65475082493218E-005 | Cons. | Z2 | Storm | Cons | CS.UNSC | GRPs | SUB.C | Prkng | Strm |
|  | ?400 | **?800** |  | 2026-08-12 | 2026-10-29 |  |  |  |  |  |  |  |  |  |  |  |  |  |  |  |  |  |  |  |
|  | 3 | **Depth From 1.5m to 2.5m** |  | 2026-08-12 | 2026-10-29 |  |  |  |  |  |  |  |  |  |  |  |  |  |  |  |  |  |  |  |
| B6.33 42 11.03-13 |  | Excavation (59.54% Completed) | 30d | 2026-08-12 A | 2026-09-15 A | B6.33 42 11.03-12 SS | 100% |  |  |  |  | Labor [18.57 h]; Foreman [9.28 h]; Operator [18.57 h]; Surveyor [9.28 h]; Surveyor Helper [9.28 h]; Excavator (With Bucket) [9.53 h]; Water Tanker [9.53 h]; Dump Truck [9.53 h]; Plate Compactor [9.53 h]; 1.51m - 2.5m [11.48] | 11,841.56 | 11,841.56 | 0.00556858258862198 | Cons. | Z2 | Storm | Cons | CS.UNSC | GRPs | SUB.C | Prkng | Strm |
| B6.33 42 11.03-16 |  | Sand Bedding (59.54% Completed) | 27d | 2026-08-16 A | 2026-09-15 A | B6.33 42 11.03-13 FF | 100% |  |  |  |  | Labor [18.57 h]; Foreman [9.28 h]; Operator [37.13 h]; Surveyor [9.28 h]; Surveyor Helper [9.28 h]; Loader [9.53 h]; Water Tanker [9.53 h]; Dump Truck [9.53 h]; Plate Compactor [9.53 h]; 1.51m - 2.5m [2.87] | 2,958.83 | 2,958.83 | 0.00139141022948663 | Cons. | Z2 | Storm | Cons | CS.UNSC | GRPs | SUB.C | Prkng | Strm |
| B6.33 42 11.03-19 |  | Pipe Laying (59.54% Completed) | 24d | 2026-08-19 A | 2026-09-15 A | B6.33 42 11.03-16 FF | 100% |  |  |  |  | Labor [18.57 h]; Foreman [9.28 h]; Plumber Helper [9.28 h]; Plumber [9.28 h]; Operator [9.28 h]; Surveyor [9.28 h]; Surveyor Helper [9.28 h]; Mobile Crane [9.53 h]; 1.51m - 2.5m [25.82] | 26,641.95 | 26,641.95 | 0.0125285754067306 | Cons. | Z2 | Storm | Cons | CS.UNSC | GRPs | SUB.C | Prkng | Strm |
| B6.33 42 11.03-115 |  | Backfilling & Warrning Tape (59.54% Completed) | 21d | 2026-08-23 A | 2026-09-15 A | B6.33 42 11.361360 SS | 100% |  |  |  |  | Labor [46.41 h]; Foreman [23.21 h]; Operator [92.83 h]; Surveyor [23.21 h]; Surveyor Helper [23.21 h]; Loader [23.81 h]; Water Tanker [23.81 h]; Dump Truck [23.81 h]; Plate Compactor [23.81 h]; Roller Compactor [23.81 h]; 1.51m - 2.5m [5.74] | 5,917.65 | 5,917.65 | 0.00278282045897326 | Cons. | Z2 | Storm | Cons | CS.UNSC | GRPs | SUB.C | Prkng | Strm |
| B6.33 42 11.03-13_R |  | Excavation(Rem) | 2.28d | 2026-10-21 | 2026-10-24 | B6.33 42 11.03-12_R SS, B6.33 42 11.03-13 |  |  |  | 106.04d | 0d | Labor [12.62 h]; Foreman [6.31 h]; Operator [12.62 h]; Surveyor [6.31 h]; Surveyor Helper [6.31 h]; Excavator (With Bucket) [6.47 h]; Water Tanker [6.47 h]; Dump Truck [6.47 h]; Plate Compactor [6.47 h]; 1.51m - 2.5m [7.8] | 8,048.52 |  | 0.00556858258862198 | Cons. | Z2 | Storm | Cons | CS.UNSC | GRPs | SUB.C | Prkng | Strm |
| B6.33 42 11.03-16_R |  | Sand Bedding(Rem) | 2.28d | 2026-10-21 | 2026-10-24 | B6.33 42 11.03-13_R FF, B6.33 42 11.03-16 |  |  |  | 106.04d | 0d | Labor [12.62 h]; Foreman [6.31 h]; Operator [25.24 h]; Surveyor [6.31 h]; Surveyor Helper [6.31 h]; Loader [6.47 h]; Water Tanker [6.47 h]; Dump Truck [6.47 h]; Plate Compactor [6.47 h]; 1.51m - 2.5m [1.95] | 2,011.07 |  | 0.00139141022948663 | Cons. | Z2 | Storm | Cons | CS.UNSC | GRPs | SUB.C | Prkng | Strm |
| B6.33 42 11.03-19_R |  | Pipe Laying(Rem) | 2.28d | 2026-10-21 | 2026-10-24 | B6.33 42 11.03-16_R FF, B6.33 42 11.03-19 |  |  |  | 106.04d | 0d | Labor [12.62 h]; Foreman [6.31 h]; Plumber Helper [6.31 h]; Plumber [6.31 h]; Operator [6.31 h]; Surveyor [6.31 h]; Surveyor Helper [6.31 h]; Mobile Crane [6.47 h]; 1.51m - 2.5m [17.55] | 18,108.11 |  | 0.0125285754067306 | Cons. | Z2 | Storm | Cons | CS.UNSC | GRPs | SUB.C | Prkng | Strm |
| B6.33 42 11.03-112 |  | Embedment & Test | 5d | 2026-10-24 | 2026-10-29 | B6.33 42 11.03-19_R |  |  |  | 106.04d | 0d | Labor [62.37 h]; Foreman [31.18 h]; Plumber Helper [31.18 h]; Plumber [31.18 h]; Operator [62.37 h]; Surveyor [31.18 h]; Surveyor Helper [31.18 h]; Loader [32 h]; Water Tanker [32 h]; Dump Truck [32 h]; Plate Compactor [32 h]; Roller Compactor [32 h]; 1.51m - 2.5m [19.28] | 19,890.09 |  | 0.00556858258862198 | Cons. | Z2 | Storm | Cons | CS.UNSC | GRPs | SUB.C | Prkng | Strm |
| B6.33 42 11.03-115_R |  | Backfilling & Warrning Tape(Rem) | 3.12d | 2026-10-26 | 2026-10-29 | B6.33 42 11.03-112 FF, B6.33 42 11.361360_R SS, B6.33 42 11.03-115 |  |  |  | 106.04d |  | Labor [31.55 h]; Foreman [15.77 h]; Operator [63.09 h]; Surveyor [15.77 h]; Surveyor Helper [15.77 h]; Loader [16.19 h]; Water Tanker [16.19 h]; Dump Truck [16.19 h]; Plate Compactor [16.19 h]; Roller Compactor [16.19 h]; 1.51m - 2.5m [3.9] | 4,022.14 |  | 0.00278282045897326 | Cons. | Z2 | Storm | Cons | CS.UNSC | GRPs | SUB.C | Prkng | Strm |
|  | Strom Manholes | **Manholes** |  | 2026-08-15 | 2026-10-26 |  |  |  |  |  |  |  |  |  |  |  |  |  |  |  |  |  |  |  |
|  | 1 | **?1200** |  | 2026-08-15 | 2026-10-26 |  |  |  |  |  |  |  |  |  |  |  |  |  |  |  |  |  |  |  |
|  | 3 | **Depth From 1.5m to 2.5m** |  | 2026-08-15 | 2026-10-26 |  |  |  |  |  |  |  |  |  |  |  |  |  |  |  |  |  |  |  |
| B6.33 05 13.04-11 |  | Excavation & Compaction (50.00% Completed) | 28d | 2026-08-15 A | 2026-09-15 A | B6.33 42 11.03-13 SS | 100% |  |  |  |  | Labor [15.59 h]; Foreman [7.8 h]; Operator [15.59 h]; Surveyor [7.8 h]; Surveyor Helper [7.8 h]; Excavator (With Bucket) [8 h]; Water Tanker [8 h]; Dump Truck [8 h]; Plate Compactor [8 h]; MH depth 1.50 - 2.5m [0.54] | 4,824.23 | 4,824.23 | 2.49372657086146E-005 | Cons. | Z2 | Storm | Cons | CS.UNSC | Manhole | SUB.C | Prkng | Strm |
| B6.33 05 13.04-14 |  | Blinding Conc, & RC Base (50.00% Completed) | 26d | 2026-08-17 A | 2026-09-15 A | B6.33 05 13.04-11 SS | 100% |  |  |  |  | Labor [15.59 h]; Foreman [7.8 h]; Laboratory Officer [7.8 h]; Carpenter [7.8 h]; Steelfixer [7.8 h]; Mason [7.8 h]; MH depth 1.50 - 2.5m [0.54] | 4,824.23 | 4,824.23 | 2.49372657086146E-005 | Cons. | Z2 | Storm | Cons | CS.UNSC | Manhole | SUB.C | Prkng | Strm |
| B6.33 05 13.04-17 |  | Manhole Installation (50.00% Completed) | 24d | 2026-08-19 A | 2026-09-15 A | B6.33 05 13.04-14 SS | 100% |  |  |  |  | Labor [15.59 h]; Operator [15.59 h]; Surveyor [7.8 h]; Surveyor Helper [7.8 h]; Boom Truck [8 h]; Mobile Crane [8 h]; MH depth 1.50 - 2.5m [2.63] | 23,586.6 | 23,586.6 | 0.000121923009916405 | Cons. | Z2 | Storm | Cons | CS.UNSC | Manhole | SUB.C | Prkng | Strm |
| B6.33 05 13.04-113 |  | Backfilling (50.00% Completed) | 20d | 2026-08-24 A | 2026-09-15 A | B6.33 42 11.05-1.65 | 100% |  |  |  |  | Labor [31.18 h]; Foreman [15.59 h]; Operator [31.18 h]; Surveyor [15.59 h]; Surveyor Helper [15.59 h]; Loader [16 h]; Water Tanker [16 h]; Dump Truck [16 h]; Plate Compactor [16 h]; MH depth 1.50 - 2.5m [1.07] | 9,648.47 | 9,648.47 | 4.98745314172292E-005 | Cons. | Z2 | Storm | Cons | CS.UNSC | Manhole | SUB.C | Prkng | Strm |
| B6.33 05 13.04-11_R |  | Excavation & Compaction(Rem) | 2d | 2026-10-13 A | 2026-10-15 A | B6.33 42 11.03-13_R SS, B6.33 05 13.04-11 | 100% | 2026-10-14 | 2026-10-15 |  |  | Labor [15.59 h]; Foreman [7.8 h]; Operator [15.59 h]; Surveyor [7.8 h]; Surveyor Helper [7.8 h]; Excavator (With Bucket) [8 h]; Water Tanker [8 h]; Dump Truck [8 h]; Plate Compactor [8 h]; MH depth 1.50 - 2.5m [0.54] | 4,824.23 | 4,824.23 | 2.49372657086146E-005 | Cons. | Z2 | Storm | Cons | CS.UNSC | Manhole | SUB.C | Prkng | Strm |
| B6.33 05 13.04-14_R |  | Blinding Conc, & RC Base(Rem) | 2d | 2026-10-14 A | 2026-10-17 A | B6.33 05 13.04-11_R SS, B6.33 05 13.04-14 | 100% | 2026-10-14 | 2026-10-15 |  |  | Labor [15.59 h]; Foreman [7.8 h]; Laboratory Officer [7.8 h]; Carpenter [7.8 h]; Steelfixer [7.8 h]; Mason [7.8 h]; MH depth 1.50 - 2.5m [0.54] | 4,824.23 | 4,824.23 | 2.49372657086146E-005 | Cons. | Z2 | Storm | Cons | CS.UNSC | Manhole | SUB.C | Prkng | Strm |
| B6.33 05 13.04-17_R |  | Manhole Installation(Rem) | 2d | 2026-10-15 A | 2026-10-18 A | B6.33 05 13.04-14_R SS, B6.33 05 13.04-17 | 100% | 2026-10-14 | 2026-10-15 |  |  | Labor [15.59 h]; Operator [15.59 h]; Surveyor [7.8 h]; Surveyor Helper [7.8 h]; Boom Truck [8 h]; Mobile Crane [8 h]; MH depth 1.50 - 2.5m [2.63] | 23,586.6 | 23,586.6 | 0.000121923009916405 | Cons. | Z2 | Storm | Cons | CS.UNSC | Manhole | SUB.C | Prkng | Strm |
| B6.33 05 13.04-113_R |  | Backfilling(Rem) | 3d | 2026-10-17 A | 2026-10-20 A | B6.33 05 13.04-110 FF, B6.33 42 11.05-1.65, B6.33 05 13.04-113, B6.33 42 11.015_R | 100% | 2026-10-20 | 2026-10-24 |  |  | Labor [31.18 h]; Foreman [15.59 h]; Operator [31.18 h]; Surveyor [15.59 h]; Surveyor Helper [15.59 h]; Loader [16 h]; Water Tanker [16 h]; Dump Truck [16 h]; Plate Compactor [16 h]; MH depth 1.50 - 2.5m [1.07] | 9,648.47 | 9,648.47 | 4.98745314172292E-005 | Cons. | Z2 | Storm | Cons | CS.UNSC | Manhole | SUB.C | Prkng | Strm |
| B6.33 05 13.04-110 |  | Test, Internal Finishing, Benching & Cover | 5d | 2026-10-21 | 2026-10-26 | B6.33 05 13.04-17_R |  |  |  | 108.32d |  | Labor [62.37 h]; Foreman [31.18 h]; Plumber Helper [31.18 h]; Plumber [31.18 h]; Mason [31.18 h]; MH depth 1.50 - 2.5m [1.07] | 9,648.47 |  | 2.49372657086146E-005 | Cons. | Z2 | Storm | Cons | CS.UNSC | Manhole | SUB.C | Prkng | Strm |

| ID | WBS | Activity | Duration | Start | Finish | Predecessors | Complete | Remaining | Planned start | Planned finish | Total float | Free float | Resources | Cost | Actual cost | Weight % | DMM2 Weekly Progress | DMM2 Zones | Networks & Stations | DMM2 Phases | UNASCO | Networks Components | Subcontractors works | Dmm2 Roads | Yellow Sheet |
| --- | --- | --- | --- | --- | --- | --- | --- | --- | --- | --- | --- | --- | --- | --- | --- | --- | --- | --- | --- | --- | --- | --- | --- | --- | --- |
|  | Catch Basins | **Catch Basins** |  | 2026-07-22 | 2026-10-24 |  |  |  |  |  |  |  |  |  |  |  |  |  |  |  |  |  |  |  |  |
|  | Sing | **Single** |  | 2026-07-22 | 2026-10-24 |  |  |  |  |  |  |  |  |  |  |  |  |  |  |  |  |  |  |  |  |
| B6.33 05 40.01.290 |  | Excavation, Compaction & Vapour Barrier (67.00% Completed) | 48d | 2026-07-22 A | 2026-09-15 A | B6.33 05 13.04-11 SS | 100% |  |  |  |  |  | Labor [20.89 h]; Foreman [10.45 h]; Operator [20.89 h]; Surveyor [10.45 h]; Surveyor Helper [10.45 h]; Excavator (With Bucket) [10.72 h]; Water Tanker [10.72 h]; Dump Truck [10.72 h]; Roller Compactor [10.72 h]; Single Catch basin [2] | 9,058.17 | 9,058.17 | 0.00296566869933904 | Cons. | Z2 | Storm | Cons | CS.UNSC | CBs | SUB.C | Prkng | Strm |
| B6.33 05 40.01.300 |  | Blinding Conc. (67.00% Completed) | 46d | 2026-07-24 A | 2026-09-15 A | B6.33 05 40.01.290 SS | 100% |  | 2026-07-25 | 2026-09-15 |  |  | Labor [20.89 h]; Foreman [10.45 h]; Laboratory Officer [10.45 h]; Carpenter [10.45 h]; Steelfixer [10.45 h]; Mason [10.45 h]; Single Catch basin [1.33] | 6,025.65 | 6,025.65 | 0.00197281439564727 | Cons. | Z2 | Storm | Cons | CS.UNSC | CBs | SUB.C | Prkng | Strm |
| B6.33 05 40.01.310 |  | Catch Basin Installation (67.00% Completed) | 45d | 2026-07-26 A | 2026-09-15 A | B6.33 05 40.01.300 SS | 100% |  |  |  |  |  | Labor [31.34 h]; Foreman [15.67 h]; Carpenter [15.67 h]; Steelfixer [15.67 h]; Mason [15.67 h]; Operator [31.34 h]; Surveyor [15.67 h]; Surveyor Helper [15.67 h]; Boom Truck [16.08 h]; Single Catch basin [5.99] | 27,056.37 | 27,056.37 | 0.00885832346280832 | Cons. | Z2 | Storm | Cons | CS.UNSC | CBs | SUB.C | Prkng | Strm |
| B6.33 05 40.01.320 |  | Backfilling, DI Frame & Grate Cover Fixing (67.00% Completed) | 35d | 2026-08-06 A | 2026-09-15 A | B6.33 42 11.36-1 2 SS, B6.33 42 11.35-1 2 SS | 100% |  |  |  |  |  | Labor [41.79 h]; Foreman [20.89 h]; Operator [41.79 h]; Surveyor [20.89 h]; Surveyor Helper [20.89 h]; Loader [21.44 h]; Water Tanker [21.44 h]; Dump Truck [21.44 h]; Plate Compactor [21.44 h]; Single Catch basin [3.99] | 18,037.58 | 18,037.58 | 0.00590554897520555 | Cons. | Z2 | Storm | Cons | CS.UNSC | CBs | SUB.C | Prkng | Strm |
| B6.33 05 40.01.290_R |  | Excavation, Compaction & Vapour Barrier(Rem) | 2d | 2026-10-21 | 2026-10-22 | B6.33 05 13.04-11_R SS, B6.33 05 40.01.290 |  |  |  |  | 111.32d | 0d | Labor [10.29 h]; Foreman [5.15 h]; Operator [10.29 h]; Surveyor [5.15 h]; Surveyor Helper [5.15 h]; Excavator (With Bucket) [5.28 h]; Water Tanker [5.28 h]; Dump Truck [5.28 h]; Roller Compactor [5.28 h]; Single Catch basin [0.99] | 4,461.49 |  | 0.00296566869933904 | Cons. | Z2 | Storm | Cons | CS.UNSC | CBs | SUB.C | Prkng | Strm |
| B6.33 05 40.01.300_R |  | Blinding Conc.(Rem) | 2d | 2026-10-21 | 2026-10-22 | B6.33 05 40.01.290_R SS, B6.33 05 40.01.300 |  |  |  |  | 111.32d | 0d | Labor [10.29 h]; Foreman [5.15 h]; Laboratory Officer [5.15 h]; Carpenter [5.15 h]; Steelfixer [5.15 h]; Mason [5.15 h]; Single Catch basin [0.66] | 2,967.86 |  | 0.00197281439564727 | Cons. | Z2 | Storm | Cons | CS.UNSC | CBs | SUB.C | Prkng | Strm |
| B6.33 05 40.01.310_R |  | Catch Basin Installation(Rem) | 2d | 2026-10-21 | 2026-10-22 | B6.33 05 40.01.300_R SS, B6.33 05 40.01.310 |  |  |  |  | 111.32d |  | Labor [15.44 h]; Foreman [7.72 h]; Carpenter [7.72 h]; Steelfixer [7.72 h]; Mason [7.72 h]; Operator [15.44 h]; Surveyor [7.72 h]; Surveyor Helper [7.72 h]; Boom Truck [7.92 h]; Single Catch basin [2.95] | 13,326.27 |  | 0.00885832346280832 | Cons. | Z2 | Storm | Cons | CS.UNSC | CBs | SUB.C | Prkng | Strm |
| B6.33 05 40.01.320_R |  | Backfilling, DI Frame & Grate Cover Fixing(Rem) | 3d | 2026-10-21 | 2026-10-24 | B6.33 42 11.36-1 2_R SS, B6.33 42 11.35-1 2_R SS, B6.33 05 40.01.320 |  |  |  |  | 99.32d | 0d | Labor [20.58 h]; Foreman [10.29 h]; Operator [20.58 h]; Surveyor [10.29 h]; Surveyor Helper [10.29 h]; Loader [10.56 h]; Water Tanker [10.56 h]; Dump Truck [10.56 h]; Plate Compactor [10.56 h]; Single Catch basin [1.97] | 8,884.18 |  | 0.00590554897520555 | Cons. | Z2 | Storm | Cons | CS.UNSC | CBs | SUB.C | Prkng | Strm |
|  | UPVC | **UPVC** |  | 2026-07-30 | 2026-10-21 |  |  |  |  |  |  |  |  |  |  |  |  |  |  |  |  |  |  |  |  |
|  | UPVC300 | **?300 From 0.0 to 1.5m** |  | 2026-07-30 | 2026-10-21 |  |  |  |  |  |  |  |  |  |  |  |  |  |  |  |  |  |  |  |  |
| B6.33 42 11.35-1 1 |  | Catch Basin Opening Prep. (60.78% Completed) | 41d | 2026-07-30 A | 2026-09-15 A | B6.33 05 40.01.310 SS | 100% |  |  |  |  |  | Labor [18.95 h]; Foreman [9.48 h]; Plumber Helper [9.48 h]; Plumber [9.48 h]; less than 1.5 [28.33] | 17,040.93 | 17,040.93 | 0.0150835855285905 | Cons. | Z2 | Storm | Cons | CS.UNSC | UPVC | SUB.C | Prkng | Strm |
| B6.33 42 11.35-1 2 |  | Fittings & Pipe Installation (60.78% Completed) | 40d | 2026-08-01 A | 2026-09-15 A | B6.33 42 11.35-1 1 SS | 100% |  |  |  |  |  | Labor [18.95 h]; Foreman [9.48 h]; Plumber Helper [9.48 h]; Plumber [9.48 h]; Surveyor [9.48 h]; Surveyor Helper [9.48 h]; less than 1.5 [113.34] | 68,163.72 | 68,163.72 | 0.0603343421083148 | Cons. | Z2 | Storm | Cons | CS.UNSC | UPVC | SUB.C | Prkng | Strm |
| B6.33 42 11.35-1 1_R |  | Catch Basin Opening Prep.(Rem) | 2.09d | 2026-10-07 A | 2026-10-21 | B6.33 05 40.01.310_R SS, B6.33 42 11.35-1 1 | 69% | 0.65d | 2026-10-07 | 2026-10-10 | 112.67d |  | Labor [12.23 h]; Foreman [6.11 h]; Plumber Helper [6.11 h]; Plumber [6.11 h]; less than 1.5 [18.28] | 10,995.03 | 7,586.57 | 0.0150835855285905 | Cons. | Z2 | Storm | Cons | CS.UNSC | UPVC | SUB.C | Prkng | Strm |
| B6.33 42 11.35-1 2_R |  | Fittings & Pipe Installation(Rem) | 2.09d | 2026-10-07 A | 2026-10-21 | B6.33 42 11.35-1 1_R SS, B6.33 42 11.35-1 2 | 69% | 0.65d | 2026-10-07 | 2026-10-10 | 99.32d | 112.67d | Labor [12.23 h]; Foreman [6.11 h]; Plumber Helper [6.11 h]; Plumber [6.11 h]; Surveyor [6.11 h]; Surveyor Helper [6.11 h]; less than 1.5 [73.13] | 43,980.12 | 30,346.29 | 0.0603343421083148 | Cons. | Z2 | Storm | Cons | CS.UNSC | UPVC | SUB.C | Prkng | Strm |
|  | UPVC3001 | **?400 From 0.0 to 1.5m** |  | 2026-08-01 | 2026-10-21 |  |  |  |  |  |  |  |  |  |  |  |  |  |  |  |  |  |  |  |  |
| B6.33 42 11.36-1 1 |  | Catch Basin Opening Prep. (60.78% Completed) | 40d | 2026-08-01 A | 2026-09-15 A | B6.33 42 11.35-1 1 SS | 100% |  |  |  |  |  | Labor [18.95 h]; Foreman [9.48 h]; Plumber Helper [9.48 h]; Plumber [9.48 h]; less than 1.5 [28.33] | 17,040.93 | 17,040.93 | 0.0150835855285905 | Cons. | Z2 | Storm | Cons | CS.UNSC | UPVC | SUB.C | Prkng | Strm |
| B6.33 42 11.36-1 2 |  | Fittings & Pipe Installation (60.78% Completed) | 38d | 2026-08-03 A | 2026-09-15 A | B6.33 42 11.36-1 1 SS | 100% |  |  |  |  |  | Labor [18.95 h]; Foreman [9.48 h]; Plumber Helper [9.48 h]; Plumber [9.48 h]; Surveyor [9.48 h]; Surveyor Helper [9.48 h]; less than 1.5 [113.34] | 68,163.72 | 68,163.72 | 0.0603343421083148 | Cons. | Z2 | Storm | Cons | CS.UNSC | UPVC | SUB.C | Prkng | Strm |
| B6.33 42 11.36-1 1_R |  | Catch Basin Opening Prep.(Rem) | 2.09d | 2026-10-07 A | 2026-10-21 | B6.33 42 11.35-1 1_R SS, B6.33 42 11.36-1 1 | 69% | 0.65d | 2026-10-07 | 2026-10-10 | 112.67d |  | Labor [12.23 h]; Foreman [6.11 h]; Plumber Helper [6.11 h]; Plumber [6.11 h]; less than 1.5 [18.28] | 10,995.03 | 7,586.57 | 0.0150835855285905 | Cons. | Z2 | Storm | Cons | CS.UNSC | UPVC | SUB.C | Prkng | Strm |
| B6.33 42 11.36-1 2_R |  | Fittings & Pipe Installation(Rem) | 2.09d | 2026-10-07 A | 2026-10-21 | B6.33 42 11.36-1 1_R SS, B6.33 42 11.36-1 2 | 69% | 0.65d | 2026-10-07 | 2026-10-10 | 99.32d | 112.67d | Labor [12.23 h]; Foreman [6.11 h]; Plumber Helper [6.11 h]; Plumber [6.11 h]; Surveyor [6.11 h]; Surveyor Helper [6.11 h]; less than 1.5 [73.13] | 43,980.12 | 30,346.29 | 0.0603343421083148 | Cons. | Z2 | Storm | Cons | CS.UNSC | UPVC | SUB.C | Prkng | Strm |
|  | Fire Fighting | **Fire Fighting Network** |  | 2026-08-22 | 2026-11-12 |  |  |  |  |  |  |  |  |  |  |  |  |  |  |  |  |  |  |  |  |
|  | HDPE | **HDPE Pipes** |  | 2026-08-22 | 2026-11-02 |  |  |  |  |  |  |  |  |  |  |  |  |  |  |  |  |  |  |  |  |
|  | ?250mm | **?250mm** |  | 2026-08-22 | 2026-11-02 |  |  |  |  |  |  |  |  |  |  |  |  |  |  |  |  |  |  |  |  |
|  | Depth: 0.0m - 1.5m | **Depth: 0.0m - 1.5m** |  | 2026-08-22 | 2026-11-02 |  |  |  |  |  |  |  |  |  |  |  |  |  |  |  |  |  |  |  |  |
| B3.1. 33 14 13.01.10 |  | Excavation (94.50% Completed) | 22d | 2026-08-22 A | 2026-09-15 A | B3.1. 33 14 13.22 SS | 100% |  |  |  |  |  | Labor [29.47 h]; Foreman [14.73 h]; Operator [29.47 h]; Surveyor [14.73 h]; Surveyor Helper [14.73 h]; Excavator (With Bucket) [15.12 h]; Water Tanker [15.12 h]; Dump Truck [15.12 h]; Plate Compactor [15.12 h]; Depth: 0.0m - 1.5m [124.27] | 59,466.14 | 59,466.14 | 0.0135564090273793 | Cons. | Z2 | Fire | Cons | CS.UNSC | HDPEs | SUB.C | Prkng | Fire |
| B3.1. 33 14 13.01.14 |  | Sand Bedding (89.00% Completed) | 19d | 2026-08-25 A | 2026-09-15 A | B3.1. 33 14 13.01.10 FF | 100% |  |  |  |  |  | Labor [27.75 h]; Foreman [13.88 h]; Operator [55.51 h]; Surveyor [13.88 h]; Surveyor Helper [13.88 h]; Loader [14.24 h]; Water Tanker [14.24 h]; Dump Truck [14.24 h]; Plate Compactor [14.24 h]; Depth: 0.0m - 1.5m [29.26] | 14,002.7 | 14,002.7 | 0.00338944352179868 | Cons. | Z2 | Fire | Cons | CS.UNSC | HDPEs | SUB.C | Prkng | Fire |
| B3.1. 33 14 13.01.18 |  | Pipe Laying (89.00% Completed) | 16d | 2026-08-29 A | 2026-09-15 A | B3.1. 33 14 13.01.14 FF | 100% |  |  |  |  |  | Labor [27.75 h]; Foreman [13.88 h]; Plumber Helper [13.88 h]; Plumber [13.88 h]; Operator [13.88 h]; Surveyor [13.88 h]; Surveyor Helper [13.88 h]; Mobile Crane [14.24 h]; Depth: 0.0m - 1.5m [263.34] | 126,013 | 126,013 | 0.0305022615765573 | Cons. | Z2 | Fire | Cons | CS.UNSC | HDPEs | SUB.C | Prkng | Fire |
| B3.1. 33 14 13.01.22 |  | Embedment & Test (89.00% Completed) | 13d | 2026-09-01 A | 2026-09-15 A | B3.1. 33 14 13.01.18 FF | 100% |  |  |  |  |  | Labor [55.51 h]; Foreman [27.75 h]; Plumber Helper [27.75 h]; Plumber [27.75 h]; Operator [55.51 h]; Surveyor [27.75 h]; Surveyor Helper [27.75 h]; Loader [28.48 h]; Water Tanker [28.48 h]; Dump Truck [28.48 h]; Plate Compactor [28.48 h]; Roller Compactor [28.48 h]; Depth: 0.0m - 1.5m [117.04] | 56,005.15 | 56,005.15 | 0.0135564090273793 | Cons. | Z2 | Fire | Cons | CS.UNSC | HDPEs | SUB.C | Prkng | Fire |
| B3.1. 33 14 13.01.10_R |  | Excavation(Rem) | 4d | 2026-10-21 | 2026-10-25 | B3.1. 33 14 13.22_R SS, B3.1. 33 14 13.01.10 |  |  |  |  | 42.32d | 0d | Labor [1.72 h]; Foreman [0.86 h]; Operator [1.72 h]; Surveyor [0.86 h]; Surveyor Helper [0.86 h]; Excavator (With Bucket) [0.88 h]; Water Tanker [0.88 h]; Dump Truck [0.88 h]; Plate Compactor [0.88 h]; Depth: 0.0m - 1.5m [7.23] | 3,460.99 |  | 0.0135564090273793 | Cons. | Z2 | Fire | Cons | CS.UNSC | HDPEs | SUB.C | Prkng | Fire |
| B3.1. 33 14 13.01.14_R |  | Sand Bedding(Rem) | 4d | 2026-10-21 | 2026-10-25 | B3.1. 33 14 13.01.10_R FF, B3.1. 33 14 13.01.14 |  |  |  |  | 42.32d | 0d | Labor [3.43 h]; Foreman [1.72 h]; Operator [6.86 h]; Surveyor [1.72 h]; Surveyor Helper [1.72 h]; Loader [1.76 h]; Water Tanker [1.76 h]; Dump Truck [1.76 h]; Plate Compactor [1.76 h]; Depth: 0.0m - 1.5m [3.62] | 1,730.67 |  | 0.00338944352179868 | Cons. | Z2 | Fire | Cons | CS.UNSC | HDPEs | SUB.C | Prkng | Fire |
| B3.1. 33 14 13.01.18_R |  | Pipe Laying(Rem) | 4d | 2026-10-21 | 2026-10-25 | B3.1. 33 14 13.01.14_R FF, B3.1. 33 14 13.01.18 |  |  |  |  | 42.32d | 0d | Labor [3.43 h]; Foreman [1.72 h]; Plumber Helper [1.72 h]; Plumber [1.72 h]; Operator [1.72 h]; Surveyor [1.72 h]; Surveyor Helper [1.72 h]; Mobile Crane [1.76 h]; Depth: 0.0m - 1.5m [32.55] | 15,574.64 |  | 0.0305022615765573 | Cons. | Z2 | Fire | Cons | CS.UNSC | HDPEs | SUB.C | Prkng | Fire |
| B3.1. 33 14 13.01.22_R |  | Embedment & Test(Rem) | 4d | 2026-10-21 | 2026-10-25 | B3.1. 33 14 13.01.18_R FF, B3.1. 33 14 13.01.22 |  |  |  |  | 86.32d | 0d | Labor [6.86 h]; Foreman [3.43 h]; Plumber Helper [3.43 h]; Plumber [3.43 h]; Operator [6.86 h]; Surveyor [3.43 h]; Surveyor Helper [3.43 h]; Loader [3.52 h]; Water Tanker [3.52 h]; Dump Truck [3.52 h]; Plate Compactor [3.52 h]; Roller Compactor [3.52 h]; Depth: 0.0m - 1.5m [14.47] | 6,921.98 |  | 0.0135564090273793 | Cons. | Z2 | Fire | Cons | CS.UNSC | HDPEs | SUB.C | Prkng | Fire |
| B3.1. 33 14 13.01.26 |  | Backfilling & Warrning Tape | 7d | 2026-10-26 | 2026-11-02 | B3.1. 33 14 13.01.22_R, B3.33 14 19.01.126 |  |  |  |  | 86.32d | 33.41d | Labor [77.96 h]; Foreman [38.98 h]; Operator [155.92 h]; Surveyor [38.98 h]; Surveyor Helper [38.98 h]; Loader [40 h]; Water Tanker [40 h]; Dump Truck [40 h]; Plate Compactor [40 h]; Roller Compactor [40 h]; Depth: 0.0m - 1.5m [65.75] | 31,460.4 |  | 0.00677752198378195 | Cons. | Z2 | Fire | Cons | CS.UNSC | HDPEs | SUB.C | Prkng | Fire |

| ID | WBS | Activity | Duration | Start | Finish | Predecessors | Complete | Total float | Free float | Resources | Cost | Actual cost | Weight % | DMM2 Weekly Progress | DMM2 Zones | Networks & Stations | DMM2 Phases | UNASCO | Networks Components | Subcontractors works | Dmm2 Roads | Yellow Sheet | All Electrical Scope |
| --- | --- | --- | --- | --- | --- | --- | --- | --- | --- | --- | --- | --- | --- | --- | --- | --- | --- | --- | --- | --- | --- | --- | --- |
|  | Depth: 1.51m - 2.5m | **Depth: 1.51m - 2.5m** |  | 2026-09-01 | 2026-11-02 |  |  |  |  |  |  |  |  |  |  |  |  |  |  |  |  |  |  |
| B3.1. 33 14 13.01.12 |  | Excavation (91.00% Completed) | 13d | 2026-09-01 A | 2026-09-15 A | B3.1. 33 14 13.01.10 SS | 100% |  |  | Labor [28.38 h]; Foreman [14.19 h]; Operator [28.38 h]; Surveyor [14.19 h]; Surveyor Helper [14.19 h]; Excavator (With Bucket) [14.56 h]; Water Tanker [14.56 h]; Dump Truck [14.56 h]; Plate Compactor [14.56 h]; Depth: 1.51m - 2.5m [7.48] | 3,908.13 | 3,908.13 | 0.000399426118713958 | Cons. | Z2 | Fire | Cons | CS.UNSC | HDPEs | SUB.C | Prkng | Fire |  |
| B3.1. 33 14 13.01.16 |  | Sand Bedding (89.00% Completed) | 11d | 2026-09-03 A | 2026-09-15 A | B3.1. 33 14 13.01.12 FF | 100% |  |  | Labor [27.75 h]; Foreman [13.88 h]; Operator [55.51 h]; Surveyor [13.88 h]; Surveyor Helper [13.88 h]; Loader [14.24 h]; Water Tanker [14.24 h]; Dump Truck [14.24 h]; Plate Compactor [14.24 h]; Depth: 1.51m - 2.5m [1.83] | 955.56 | 955.56 | 9.98565296784896E-005 | Cons. | Z2 | Fire | Cons | CS.UNSC | HDPEs | SUB.C | Prkng | Fire |  |
| B3.1. 33 14 13.01.20 |  | Pipe Laying (89.00% Completed) | 8d | 2026-09-07 A | 2026-09-15 A | B3.1. 33 14 13.01.16 FF | 100% |  |  | Labor [27.75 h]; Foreman [13.88 h]; Plumber Helper [13.88 h]; Plumber [13.88 h]; Operator [13.88 h]; Surveyor [13.88 h]; Surveyor Helper [13.88 h]; Mobile Crane [14.24 h]; Depth: 1.51m - 2.5m [16.46] | 8,600.03 | 8,600.03 | 0.00089870876710641 | Cons. | Z2 | Fire | Cons | CS.UNSC | HDPEs | SUB.C | Prkng | Fire |  |
| B3.1. 33 14 13.01.24 |  | Embedment & Test (89.00% Completed) | 5d | 2026-09-10 A | 2026-09-15 A | B3.1. 33 14 13.01.20 FF | 100% |  |  | Labor [55.51 h]; Foreman [27.75 h]; Plumber Helper [27.75 h]; Plumber [27.75 h]; Operator [55.51 h]; Surveyor [27.75 h]; Surveyor Helper [27.75 h]; Loader [28.48 h]; Water Tanker [28.48 h]; Dump Truck [28.48 h]; Plate Compactor [28.48 h]; Roller Compactor [28.48 h]; Depth: 1.51m - 2.5m [7.32] | 3,822.23 | 3,822.23 | 0.000399426118713958 | Cons. | Z2 | Fire | Cons | CS.UNSC | HDPEs | SUB.C | Prkng | Fire |  |
| B3.1. 33 14 13.01.12_R |  | Excavation(Rem) | 4d | 2026-10-21 | 2026-10-25 | B3.1. 33 14 13.01.10_R SS, B3.1. 33 14 13.01.12 |  | 42.32d | 0d | Labor [2.81 h]; Foreman [1.4 h]; Operator [2.81 h]; Surveyor [1.4 h]; Surveyor Helper [1.4 h]; Excavator (With Bucket) [1.44 h]; Water Tanker [1.44 h]; Dump Truck [1.44 h]; Plate Compactor [1.44 h]; Depth: 1.51m - 2.5m [0.74] | 386.52 |  | 0.000399426118713958 | Cons. | Z2 | Fire | Cons | CS.UNSC | HDPEs | SUB.C | Prkng | Fire |  |
| B3.1. 33 14 13.01.16_R |  | Sand Bedding(Rem) | 4d | 2026-10-21 | 2026-10-25 | B3.1. 33 14 13.01.12_R FF, B3.1. 33 14 13.01.16 |  | 42.32d | 0d | Labor [3.43 h]; Foreman [1.72 h]; Operator [6.86 h]; Surveyor [1.72 h]; Surveyor Helper [1.72 h]; Loader [1.76 h]; Water Tanker [1.76 h]; Dump Truck [1.76 h]; Plate Compactor [1.76 h]; Depth: 1.51m - 2.5m [0.23] | 118.1 |  | 9.98565296784896E-005 | Cons. | Z2 | Fire | Cons | CS.UNSC | HDPEs | SUB.C | Prkng | Fire |  |
| B3.1. 33 14 13.01.20_R |  | Pipe Laying(Rem) | 4d | 2026-10-21 | 2026-10-25 | B3.1. 33 14 13.01.16_R FF, B3.1. 33 14 13.01.20 |  | 42.32d | 0d | Labor [3.43 h]; Foreman [1.72 h]; Plumber Helper [1.72 h]; Plumber [1.72 h]; Operator [1.72 h]; Surveyor [1.72 h]; Surveyor Helper [1.72 h]; Mobile Crane [1.76 h]; Depth: 1.51m - 2.5m [2.03] | 1,062.92 |  | 0.00089870876710641 | Cons. | Z2 | Fire | Cons | CS.UNSC | HDPEs | SUB.C | Prkng | Fire |  |
| B3.1. 33 14 13.01.24_R |  | Embedment & Test(Rem) | 4d | 2026-10-21 | 2026-10-25 | B3.1. 33 14 13.01.20_R FF, B3.1. 33 14 13.01.24 |  | 86.32d | 0d | Labor [6.86 h]; Foreman [3.43 h]; Plumber Helper [3.43 h]; Plumber [3.43 h]; Operator [6.86 h]; Surveyor [3.43 h]; Surveyor Helper [3.43 h]; Loader [3.52 h]; Water Tanker [3.52 h]; Dump Truck [3.52 h]; Plate Compactor [3.52 h]; Roller Compactor [3.52 h]; Depth: 1.51m - 2.5m [0.9] | 472.41 |  | 0.000399426118713958 | Cons. | Z2 | Fire | Cons | CS.UNSC | HDPEs | SUB.C | Prkng | Fire |  |
| B3.1. 33 14 13.01.28 |  | Backfilling & Warrning Tape | 7d | 2026-10-26 | 2026-11-02 | B3.1. 33 14 13.01.24_R |  | 86.32d | 33.41d | Labor [77.96 h]; Foreman [38.98 h]; Operator [155.92 h]; Surveyor [38.98 h]; Surveyor Helper [38.98 h]; Loader [40 h]; Water Tanker [40 h]; Dump Truck [40 h]; Plate Compactor [40 h]; Roller Compactor [40 h]; Depth: 1.51m - 2.5m [4.11] | 2,147.32 |  | 0.00019971305935698 | Cons. | Z2 | Fire | Cons | CS.UNSC | HDPEs | SUB.C | Prkng | Fire |  |
|  | 3 | **Fire Hydrant** |  | 2026-10-26 | 2026-11-12 |  |  |  |  |  |  |  |  |  |  |  |  |  |  |  |  |  |  |
| B3.33 14 19.01.fh29 |  | Riser Pipe & Flanged Fittings Installation | 4d | 2026-10-26 | 2026-10-29 | B3.1. 33 14 13.01.20_R, B3.1. 33 14 13.01.18_R |  | 42.32d | 0d | Labor [31.18 h]; Plumber Helper [15.59 h]; Welder [15.59 h]; Plumber [15.59 h]; Surveyor [15.59 h]; Surveyor Helper [15.59 h]; Welding Machine [16 h]; 3-outlet fire hydrant (2 x 2.5 inch and 1 x 4.5 inch) in the form of a separate dry vacuum cylinder [1.49] | 16,415.29 |  | 0.00314407764631429 | Cons. | Z2 | Fire | Cons | CS.UNSC | FH | SUB.C | Prkng | Fire |  |
| B3.33 14 19.01.fh28 |  | Firehydrant Fixing/Installation | 5d | 2026-10-31 | 2026-11-04 | B3.33 14 19.01.fh29 |  | 42.32d | 0d | Labor [46.78 h]; Foreman [23.39 h]; Plumber Helper [23.39 h]; Plumber [23.39 h]; Operator [46.78 h]; Surveyor [23.39 h]; Surveyor Helper [23.39 h]; JCB [24 h]; 3-outlet fire hydrant (2 x 2.5 inch and 1 x 4.5 inch) in the form of a separate dry vacuum cylinder [4.47] | 49,245.86 |  | 0.0094322329389428 | Cons. | Z2 | Fire | Cons | CS.UNSC | FH | SUB.C | Prkng | Fire |  |
| B3.33 14 19.01.fh30 |  | Backfilling & Compaction | 7d | 2026-11-05 | 2026-11-12 | B3.33 14 19.01.fh28 |  | 42.32d | 0d | Labor [77.96 h]; Foreman [38.98 h]; Operator [77.96 h]; Surveyor [38.98 h]; Surveyor Helper [38.98 h]; Loader [40 h]; Water Tanker [40 h]; Dump Truck [40 h]; Plate Compactor [40 h]; 3-outlet fire hydrant (2 x 2.5 inch and 1 x 4.5 inch) in the form of a separate dry vacuum cylinder [1.49] | 16,415.29 |  | 0.00314407764631429 | Cons. | Z2 | Fire | Cons | CS.UNSC | FH | SUB.C | Prkng | Fire |  |
|  | Dry Networks | **Dry Networks** |  | 2026-10-25 | 2026-12-30 |  |  |  |  |  |  |  |  |  |  |  |  |  |  |  |  |  |  |
|  | LV Network | **Low Voltage Network** |  | 2026-11-14 | 2026-11-15 |  |  |  |  |  |  |  |  |  |  |  |  |  |  |  |  |  |  |
|  | Cables | **Cables** |  | 2026-11-14 | 2026-11-15 |  |  |  |  |  |  |  |  |  |  |  |  |  |  |  |  |  |  |
|  | 4C,10+1C,10mm2 | **4C,10+1C,10mm2** |  | 2026-11-14 | 2026-11-15 |  |  |  |  |  |  |  |  |  |  |  |  |  |  |  |  |  |  |
| B2.33 71 00 01 10 |  | Cable Pulling | 2d | 2026-11-14 | 2026-11-15 | B3.33 14 19.01.fh30 |  | 42.32d | 35.32d | Labor [62.37 h]; Foreman [31.18 h]; Surveyor [31.18 h]; Surveyor Helper [31.18 h]; Electrician [31.18 h]; Cable, Copper 4x10mm2/ CU/XLPE/SWA/PVC + 1x10mm2 CU/PVC [1535.55] | 95,723.28 |  | 0.0182956258973869 | Cons. | Z2 | LV | Cons |  | Cbl&Dct | SUB.C | Prkng | LV | allElec |
|  | Street Lighting | **Street Lighting** |  | 2026-10-25 | 2026-12-30 |  |  |  |  |  |  |  |  |  |  |  |  |  |  |  |  |  |  |
|  | Duct Banks | **Duct Banks** |  | 2026-10-25 | 2026-12-15 |  |  |  |  |  |  |  |  |  |  |  |  |  |  |  |  |  |  |
|  | 2 Way | **2 Way** |  | 2026-10-25 | 2026-12-15 |  |  |  |  |  |  |  |  |  |  |  |  |  |  |  |  |  |  |
| B2.33 71 00 02 64 |  | Excavation | 2d | 2026-10-25 | 2026-10-26 | B6.33 05 40.01.320_R |  | 99.32d | 0d | Labor [31.18 h]; Foreman [15.59 h]; Operator [31.18 h]; Surveyor [15.59 h]; Surveyor Helper [15.59 h]; Excavator (With Bucket) [16 h]; Water Tanker [16 h]; Dump Truck [16 h]; Plate Compactor [16 h]; SL Excavation for Trench size 40cm wide and 65cm deep (for 1 cable); Road Crossing Duct for Street Lighting cables UPVC (2xDia. 110mm) [33.4] | 9,208.14 |  | 0.0034843117378167 | Cons. | Z2 | SL | Cons |  | Cables | SUB.C | Prkng | SL | allElec |
| B2.33 71 00 02 65 |  | Shuttering, Steel Fixing Incl. UPVC Pipe & Conc. Cast | 3d | 2026-10-27 | 2026-10-29 | B2.33 71 00 02 64 |  | 101.32d | 38d | Labor [93.55 h]; Laboratory Officer [46.78 h]; Carpenter [46.78 h]; Steelfixer [46.78 h]; Mason [46.78 h]; Surveyor [46.78 h]; Surveyor Helper [46.78 h]; SL Excavation for Trench size 40cm wide and 65cm deep (for 1 cable); Road Crossing Duct for Street Lighting cables UPVC (2xDia. 110mm) [100.2] | 27,624.41 |  | 0.0104529352134501 | Cons. | Z2 | SL | Cons |  | Cables | SUB.C | Prkng | SL | allElec |
| B2.33 71 00 02 66 |  | Backfilling & Warrning Tape | 2d | 2026-12-14 | 2026-12-15 | B2.33 71 00 02 65, B2.33 71 00 02 69 SS, B2.33 71 19 112 |  | 63.32d | 1d | Labor [77.96 h]; Foreman [38.98 h]; Operator [155.92 h]; Surveyor [38.98 h]; Surveyor Helper [38.98 h]; Loader [40 h]; Water Tanker [40 h]; Dump Truck [40 h]; Plate Compactor [40 h]; Roller Compactor [40 h]; SL Excavation for Trench size 40cm wide and 65cm deep (for 1 cable); Road Crossing Duct for Street Lighting cables UPVC (2xDia. 110mm) [33.4] | 9,208.14 |  | 0.0034843117378167 | Cons. | Z2 | SL | Cons |  | Cables | SUB.C | Prkng | SL | allElec |

| ID | WBS | Activity | Duration | Start | Finish | Predecessors | Total float | Free float | Resources | Cost | Weight % | DMM2 Weekly Progress | DMM2 Zones | Networks & Stations | DMM2 Phases | Networks Components | All Electrical Scope | Subcontractors works | Dmm2 Roads | Yellow Sheet |
| --- | --- | --- | --- | --- | --- | --- | --- | --- | --- | --- | --- | --- | --- | --- | --- | --- | --- | --- | --- | --- |
|  | 6 Way | **6 Way** |  | 2026-10-27 | 2026-12-15 |  |  |  |  |  |  |  |  |  |  |  |  |  |  |  |
| B2.33 71 00 02 67 |  | Excavation | 2d | 2026-10-27 | 2026-10-28 | B2.33 71 00 02 64 | 99.32d | 0d | Labor [31.18 h]; Foreman [15.59 h]; Operator [31.18 h]; Surveyor [15.59 h]; Surveyor Helper [15.59 h]; Excavator (With Bucket) [16 h]; Water Tanker [16 h]; Dump Truck [16 h]; Plate Compactor [16 h]; SL Excavation for Trench size 90cm wide and 65cm deep ( for 3 cables); Road Crossing Duct for Street Lighting cables UPVC (6xDia. 110mm) [13.2] | 7,510.08 | 0.00257786540176722 | Cons. | Z2 | SL | Cons | Cables | allElec | SUB.C | Prkng | SL |
| B2.33 71 00 02 68 |  | Shuttering, Steel Fixing Incl. UPVC Pipe & Conc. Cast | 3d | 2026-10-29 | 2026-11-01 | B2.33 71 00 02 67 | 99.32d | 36d | Labor [93.55 h]; Laboratory Officer [46.78 h]; Carpenter [46.78 h]; Steelfixer [46.78 h]; Mason [46.78 h]; Surveyor [46.78 h]; Surveyor Helper [46.78 h]; SL Excavation for Trench size 90cm wide and 65cm deep ( for 3 cables); Road Crossing Duct for Street Lighting cables UPVC (6xDia. 110mm) [39.6] | 22,530.24 | 0.00773359620530166 | Cons. | Z2 | SL | Cons | Cables | allElec | SUB.C | Prkng | SL |
| B2.33 71 00 02 69 |  | Backfilling & Warrning Tape | 2d | 2026-12-14 | 2026-12-15 | B2.33 71 00 02 68, B2.33 71 19 34, B2.33 71 19 013, B2.33 71 49.23.112_R | 63.32d | 0d | Labor [77.96 h]; Foreman [38.98 h]; Operator [155.92 h]; Surveyor [38.98 h]; Surveyor Helper [38.98 h]; Loader [40 h]; Water Tanker [40 h]; Dump Truck [40 h]; Plate Compactor [40 h]; Roller Compactor [40 h]; SL Excavation for Trench size 90cm wide and 65cm deep ( for 3 cables); Road Crossing Duct for Street Lighting cables UPVC (6xDia. 110mm) [13.2] | 7,510.08 | 0.00257786540176722 | Cons. | Z2 | SL | Cons | Cables | allElec | SUB.C | Prkng | SL |
|  | Drawpits | **Drawpits** |  | 2026-10-29 | 2026-11-05 |  |  |  |  |  |  |  |  |  |  |  |  |  |  |  |
| B2.33 71 00 02 70 |  | Excavation | 2d | 2026-10-29 | 2026-10-31 | B2.33 71 00 02 67, B2.33 71 00 02 64 | 99.32d | 0d | Labor [31.18 h]; Foreman [15.59 h]; Operator [31.18 h]; Surveyor [15.59 h]; Surveyor Helper [15.59 h]; Excavator (With Bucket) [16 h]; Water Tanker [16 h]; Dump Truck [16 h]; Plate Compactor [16 h]; Drawpit with medium duty steel cover, size600x600x900mm, [2.43] | 14,384.57 | 0.0025348715507172 | Cons. | Z2 | SL | Cons | Cables | allElec | SUB.C | Prkng | SL |
| B2.33 71 00 02 71 |  | Drawpits Installation | 2d | 2026-11-01 | 2026-11-02 | B2.33 71 00 02 70 | 99.32d | 0d | Labor [31.18 h]; Laboratory Officer [15.59 h]; Carpenter [15.59 h]; Steelfixer [15.59 h]; Mason [15.59 h]; Surveyor [15.59 h]; Surveyor Helper [15.59 h]; Drawpit with medium duty steel cover, size600x600x900mm, [7.28] | 43,153.72 | 0.0076046146521516 | Cons. | Z2 | SL | Cons | Cables | allElec | SUB.C | Prkng | SL |
| B2.33 71 00 02 72 |  | Backfilling & Warrning Tape | 3d | 2026-11-03 | 2026-11-05 | B2.33 71 00 02 71 | 99.32d |  | Labor [77.96 h]; Foreman [38.98 h]; Operator [155.92 h]; Surveyor [38.98 h]; Surveyor Helper [38.98 h]; Loader [40 h]; Water Tanker [40 h]; Dump Truck [40 h]; Plate Compactor [40 h]; Roller Compactor [40 h]; Drawpit with medium duty steel cover, size600x600x900mm, [2.43] | 14,384.57 | 0.0025348715507172 | Cons. | Z2 | SL | Cons | Cables | allElec | SUB.C | Prkng | SL |
|  | Earthing | **Earthing** |  | 2026-12-23 | 2026-12-30 |  |  |  |  |  |  |  |  |  |  |  |  |  |  |  |
| B2.33 71 19 29 |  | Land Adjustment | 2d | 2026-12-23 | 2026-12-26 | B2.33 71 16.61, B2.33 71 16.57 | 52.91d | 0d | Labor [46.78 h]; Foreman [23.39 h]; Operator [31.18 h]; Surveyor [7.8 h]; Surveyor Helper [7.8 h]; Excavator (With Bucket) [24 h]; Water Tanker [24 h]; Dump Truck [24 h]; Roller Compactor [24 h]; SL Earthing Including lighting poles circuits [0.45] | 904.39 | 0.000454679838542865 | Cons. | Z2 | SL | Cons | Cables | allElec | SUB.C | Prkng | SL |
| B2.33 71 19 30 |  | Earth Rods & Conduits | 2d | 2026-12-26 | 2026-12-28 | B2.33 71 19 29 | 52.91d | 0d | Labor [46.78 h]; Foreman [23.39 h]; Electrician [23.39 h]; SL Earthing Including lighting poles circuits [1.33] | 2,672.96 | 0.00134383152280447 | Cons. | Z2 | SL | Cons | Cables | allElec | SUB.C | Prkng | SL |
| B2.33 71 19 31 |  | Backfilling | 2d | 2026-12-28 | 2026-12-30 | B2.33 71 19 30, B2.33 71 00 01 10, B2.33 71 16.86 | 52.91d | 0d | Labor [93.55 h]; Foreman [46.78 h]; Operator [93.55 h]; Surveyor [46.78 h]; Surveyor Helper [46.78 h]; Loader [48 h]; Water Tanker [48 h]; Dump Truck [48 h]; Plate Compactor [48 h]; SL Earthing Including lighting poles circuits [0.45] | 904.39 | 0.000454679838542865 | Cons. | Z2 | SL | Cons | Cables | allElec | SUB.C | Prkng | SL |
|  | SL Poles | **SL Poles** |  | 2026-12-12 | 2026-12-28 |  |  |  |  |  |  |  |  |  |  |  |  |  |  |  |
|  | Pole (10 M Sngl Arm) | **Pole (10 M Single Arm)** |  | 2026-12-12 | 2026-12-23 |  |  |  |  |  |  |  |  |  |  |  |  |  |  |  |
| B2.33 71 16.55 |  | Excavation | 3d | 2026-12-12 | 2026-12-15 | B3.1. 33 14 13.01.26, B3.1. 33 14 13.01.28, B2.33 71 16.35, B1.2.32 11 26.01.7_R | 52.91d | 0d | Labor [46.78 h]; Foreman [23.39 h]; Operator [46.78 h]; Surveyor [23.39 h]; Surveyor Helper [23.39 h]; Excavator (With Bucket) [24 h]; Dump Truck [24 h]; Lighting poles with 1 arm, height of ( 10) meters [6.6] | 58,898.5 | 0.0112471278804954 | Cons. | Z2 | SL | Cons | Pls&Lmn | allElec | SUB.C | Prkng | SL |
| B2.33 71 16.56 |  | PC & RC Foundation | 2d | 2026-12-15 | 2026-12-17 | B2.33 71 16.55 | 55.91d | 0d | Labor [77.96 h]; Foreman [38.98 h]; Laboratory Officer [38.98 h]; Carpenter [38.98 h]; Steelfixer [38.98 h]; Mason [38.98 h]; Lighting poles with 1 arm, height of ( 10) meters [6.6] | 58,898.5 | 0.0112471278804954 | Cons. | Z2 | SL | Cons | Pls&Lmn | allElec | SUB.C | Prkng | SL |
| B2.33 71 16.57 |  | Lighting Poles Installation Incl power box, Cables | 2d | 2026-12-17 | 2026-12-20 | B2.33 71 16.56 | 55.91d | 0d | Labor [93.55 h]; Operator [93.55 h]; Mobile Crane [48 h]; Electrician [46.78 h]; Lighting poles with 1 arm, height of ( 10) meters [13.2] | 117,797 | 0.0224942557609906 | Cons. | Z2 | SL | Cons | Pls&Lmn | allElec | SUB.C | Prkng | SL |
| B2.26.56.19.7 |  | Lighting Luminares Inst | 1d | 2026-12-20 | 2026-12-21 | B2.33 71 16.57 | 58.91d | 0d | Labor [62.37 h]; Operator [62.37 h]; Manlift [32 h]; Street Lighting( LED), Lamp Lumen: 14560, Luminare Lumen:12700 , complete with control gear and lamp, (80) WATT. [25] | 23,179.2 | 0.0047113256383061 | Cons. | Z2 | SL | Cons | Pls&Lmn | allElec | SUB.C | Prkng | SL |
| B2.33 71 16.58 |  | Backfilling, Grouting & Chamfering | 2d | 2026-12-21 | 2026-12-23 | B2.26.56.19.7 | 58.91d | 6d | Labor [93.55 h]; Foreman [46.78 h]; Mason [46.78 h]; Operator [93.55 h]; Surveyor [46.78 h]; Surveyor Helper [46.78 h]; Loader [48 h]; Water Tanker [48 h]; Dump Truck [48 h]; Plate Compactor [48 h]; Lighting poles with 1 arm, height of ( 10) meters [6.6] | 58,898.5 | 0.0112471278804954 | Cons. | Z2 | SL | Cons | Pls&Lmn | allElec | SUB.C | Prkng | SL |
|  | Pole (10 M Dbl Arm) | **Pole (10 M Double Arm)** |  | 2026-12-15 | 2026-12-28 |  |  |  |  |  |  |  |  |  |  |  |  |  |  |  |
| B2.33 71 16.59 |  | Excavation | 2d | 2026-12-15 | 2026-12-17 | B2.33 71 16.55, B2.33 71 00 02 58 | 52.91d | 0d | Labor [46.78 h]; Foreman [23.39 h]; Operator [46.78 h]; Surveyor [23.39 h]; Surveyor Helper [23.39 h]; Excavator (With Bucket) [24 h]; Dump Truck [24 h]; Lighting poles with 2 arms, height of ( 10) meters [2.01] | 18,488.33 | 0.00352048130754849 | Cons. | Z2 | SL | Cons | Pls&Lmn | allElec | SUB.C | Prkng | SL |
| B2.33 71 16.60 |  | PC & RC Foundation | 3d | 2026-12-17 | 2026-12-21 | B2.33 71 16.59 | 52.91d | 0d | Labor [77.96 h]; Foreman [38.98 h]; Laboratory Officer [38.98 h]; Carpenter [38.98 h]; Steelfixer [38.98 h]; Mason [38.98 h]; Lighting poles with 2 arms, height of ( 10) meters [2.01] | 18,488.33 | 0.00352048130754849 | Cons. | Z2 | SL | Cons | Pls&Lmn | allElec | SUB.C | Prkng | SL |
| B2.33 71 16.61 |  | Lighting Poles Installation Incl power box, Cables | 2d | 2026-12-21 | 2026-12-23 | B2.33 71 16.60 | 52.91d | 0d | Labor [93.55 h]; Operator [93.55 h]; Mobile Crane [48 h]; Electrician [46.78 h]; Lighting poles with 2 arms, height of ( 10) meters [4.01] | 36,976.66 | 0.00704096261509691 | Cons. | Z2 | SL | Cons | Pls&Lmn | allElec | SUB.C | Prkng | SL |
| B2.26.56.19.8 |  | Lighting Luminares Inst | 2d | 2026-12-23 | 2026-12-26 | B2.33 71 16.61 | 52.91d | 0d | Labor [62.37 h]; Operator [62.37 h]; Manlift [32 h]; Street Lighting( LED), Lamp Lumen: 14560, Luminare Lumen:12700 , complete with control gear and lamp, (80) WATT. [30.11] | 27,918.13 | 0.0047113256383061 | Cons. | Z2 | SL | Cons | Pls&Lmn | allElec | SUB.C | Prkng | SL |
| B2.33 71 16.62 |  | Backfilling, Grouting & Chamfering | 2d | 2026-12-26 | 2026-12-28 | B2.26.56.19.8 | 52.91d | 0d | Labor [93.55 h]; Foreman [46.78 h]; Mason [46.78 h]; Operator [93.55 h]; Surveyor [46.78 h]; Surveyor Helper [46.78 h]; Loader [48 h]; Water Tanker [48 h]; Dump Truck [48 h]; Plate Compactor [48 h]; Lighting poles with 2 arms, height of ( 10) meters [2.01] | 18,488.33 | 0.00352048130754849 | Cons. | Z2 | SL | Cons | Pls&Lmn | allElec | SUB.C | Prkng | SL |

| ID | WBS | Activity | Duration | Start | Finish | Predecessors | Complete | Total float | Free float | Resources | Cost | Actual cost | Weight % | DMM2 Weekly Progress | DMM2 Zones | Networks & Stations | DMM2 Phases | Dmm2 Roads | Networks Components | Yellow Sheet |
| --- | --- | --- | --- | --- | --- | --- | --- | --- | --- | --- | --- | --- | --- | --- | --- | --- | --- | --- | --- | --- |
|  | Earth & Road Works | **Earth & Road Works** |  | 2025-11-29 | 2026-12-28 |  |  |  |  |  |  |  |  |  |  |  |  |  |  |  |
|  | Earth Works | **Earth Works** |  | 2025-11-29 | 2026-04-08 |  |  |  |  |  |  |  |  |  |  |  |  |  |  |  |
| B1.2.31 23 16.01.7 |  | Roadway Excavation | 101.2d | 2025-11-29 A | 2026-04-08 A | DMM2-Eng-MS-78 | 100% |  |  | Roadway Excavation for cuttings (all types of soil) [23797]; Labor [28.35 h]; Foreman [14.17 h]; Operator [28.35 h]; Surveyor [14.17 h]; Surveyor Helper [14.17 h]; Excavator (With Bucket) [16 h]; Water Tanker [16 h]; Dump Truck [16 h] | 355,193.3 | 355,193.3 | 4.33734682153506E-005 | Cons. | Z2 | Roads | Cons | Prkng |  |  |
| B1.2.31 23 23.01.7 |  | Embankment Backfiling | 97.04d | 2025-12-03 A | 2026-04-08 A | B1.2.31 23 16.01.7 | 100% |  |  | Embankment backfiling [82226.3]; Labor [56.7 h]; Foreman [28.35 h]; Operator [56.7 h]; Surveyor [28.35 h]; Surveyor Helper [28.35 h]; Loader [32 h]; Water Tanker [32 h]; Dump Truck [32 h]; Plate Compactor [32 h]; Roller Compactor [32 h] | 2,238,034.77 | 2,238,034.77 | 0.297029023227272 | Cons. | Z2 | Roads | Cons | Prkng |  |  |
|  | Earth Layers | **Earth Layers** |  | 2026-03-10 | 2026-10-26 |  |  |  |  |  |  |  |  |  |  |  |  |  |  |  |
| B1.2.32 11 13.01.7 |  | Subgrade (65.00% Completed) | 152.96d | 2026-03-10 A | 2026-09-15 A | B1.2.31 23 23.01.7 | 100% |  |  | Subgrade [9310.14]; Labor [70.95 h]; Foreman [35.47 h]; Operator [70.95 h]; Surveyor [35.47 h]; Surveyor Helper [35.47 h]; Grader [36.4 h]; Loader [36.4 h]; Water Tanker [36.4 h]; Dump Truck [36.4 h]; Plate Compactor [36.4 h]; Roller Compactor [36.4 h] | 277,926.21 | 277,926.21 | 0.250733164961853 | Cons. | Z2 | Roads | Cons | Prkng | Roads | Sub |
| B1.2.32 11 23.01.7 |  | Aggregate Base Course (60.00% Completed) | 108.67d | 2026-05-07 A | 2026-09-15 A | B1.2.32 11 13.01.7 SS | 100% |  |  | Aggregate base course [5729.31]; Labor [46.78 h]; Foreman [23.39 h]; Operator [46.78 h]; Surveyor [23.39 h]; Surveyor Helper [23.39 h]; Grader [24 h]; Loader [24 h]; Water Tanker [24 h]; Dump Truck [24 h]; Plate Compactor [24 h]; Roller Compactor [24 h] | 498,003.48 | 498,003.48 | 0.472573486490257 | Cons. | Z2 | Roads | Cons | Prkng | Roads | Agg |
| B1.2.32 11 13.01.7_R |  | Subgrade(Rem) | 5d | 2026-10-21 | 2026-10-26 | B1.2.31 23 23.01.7, B1.2.32 11 13.01.7 |  | 108.32d | 0d | Subgrade [5013.15]; Labor [38.2 h]; Foreman [19.1 h]; Operator [38.2 h]; Surveyor [19.1 h]; Surveyor Helper [19.1 h]; Grader [19.6 h]; Loader [19.6 h]; Water Tanker [19.6 h]; Dump Truck [19.6 h]; Plate Compactor [19.6 h]; Roller Compactor [19.6 h] | 149,652.58 |  | 0.250733164961853 | Cons. | Z2 | Roads | Cons | Prkng | Roads | Sub |
| B1.2.32 11 23.01.7_R |  | Aggregate Base Course(Rem) | 2d | 2026-10-21 | 2026-10-22 | B1.2.32 11 13.01.7_R SS, B1.2.32 11 23.01.7 |  | 111.32d |  | Aggregate base course [3819.54]; Labor [31.18 h]; Foreman [15.59 h]; Operator [31.18 h]; Surveyor [15.59 h]; Surveyor Helper [15.59 h]; Grader [16 h]; Loader [16 h]; Water Tanker [16 h]; Dump Truck [16 h]; Plate Compactor [16 h]; Roller Compactor [16 h] | 332,002.32 |  | 0.472573486490257 | Cons. | Z2 | Roads | Cons | Prkng | Roads | Agg |
|  | Interlock | **Interlock** |  | 2026-12-26 | 2026-12-28 |  |  |  |  |  |  |  |  |  |  |  |  |  |  |  |
| B1.2.32 14 13.13.7 |  | 60mm thick - Interlocking Block Pavers | 2d | 2026-12-26 | 2026-12-28 | B1.2.32 14 13.13.14 |  | 50.91d | 0d | 60mm thick - Interlocking block pavers for sidewalks and medians [3408.96]; Labor [124.74 h]; Foreman [62.37 h]; Mason [62.37 h]; Operator [124.74 h]; JCB [64 h] | 227,472.88 |  | 0.126286939314159 | Cons. | Z2 | Roads | Cons | Prkng | Roads |  |
|  | Curbstone | **Curbstone** |  | 2026-11-26 | 2026-12-10 |  |  |  |  |  |  |  |  |  |  |  |  |  |  |  |
|  | Pre Install | **Pre-Installation** |  | 2026-11-26 | 2026-12-03 |  |  |  |  |  |  |  |  |  |  |  |  |  |  |  |
| B2.31 23 00.181 |  | Excavation | 2d | 2026-11-26 | 2026-11-29 | B2.31 23 00.121 |  | 13d | 0d | Curb Stone, Type K1 [670.66]; Dropped Curb, Type K3 [2.23]; Edge Curb, Type K4 [404.02]; Heel Curb, Type K5 [264.3]; Transition Curb [2.86]; Labor [155.92 h]; Foreman [77.96 h]; Operator [155.92 h]; Surveyor [77.96 h]; Surveyor Helper [77.96 h]; JCB [80 h]; Water Tanker [80 h]; Dump Truck [80 h]; Plate Compactor [80 h] | 98,497.77 |  | 0.0558297712206799 | Cons. | Z2 | Roads | Cons | Prkng | Roads |  |
| B1.2.32 14 13.13.27 |  | PCC | 2d | 2026-11-29 | 2026-12-01 | B2.31 23 00.181 |  | 66d | 0d | Curb Stone, Type K1 [670.66]; Dropped Curb, Type K3 [2.23]; Edge Curb, Type K4 [404.02]; Heel Curb, Type K5 [264.3]; Transition Curb [2.86]; Labor [77.96 h]; Mason [38.98 h]; Surveyor [38.98 h]; Surveyor Helper [38.98 h] | 98,497.77 |  | 0.0558297712206799 | Cons. | Z2 | Roads | Cons | Prkng | Roads |  |
| 32 16 13.007 |  | Haunching | 2d | 2026-12-01 | 2026-12-03 | B1.2.32 14 13.13.27 |  | 66d | 0d | Curb Stone, Type K1 [670.66]; Dropped Curb, Type K3 [2.23]; Edge Curb, Type K4 [404.02]; Heel Curb, Type K5 [264.3]; Transition Curb [2.86]; Labor [155.92 h]; Carpenter [77.96 h]; Mason [77.96 h]; Surveyor [77.96 h]; Surveyor Helper [77.96 h] | 98,497.77 |  | 0.0558297712206799 | Cons. | Z2 | Roads | Cons | Prkng | Roads |  |
|  | Installation | **Installation** |  | 2026-12-03 | 2026-12-09 |  |  |  |  |  |  |  |  |  |  |  |  |  |  |  |
| B1.2.32 16.13.01.7 |  | Curb Stone, Type K1 | 2d | 2026-12-03 | 2026-12-06 | 32 16 13.007 |  | 66d | 0d | Curb Stone, Type K1 [2011.98]; Labor [109.15 h]; Foreman [54.57 h]; Mason [54.57 h]; Operator [109.15 h]; Surveyor [54.57 h]; Surveyor Helper [54.57 h]; JCB [56 h] | 151,920.56 |  | 0.0896048357041945 | Cons. | Z2 | Roads | Cons | Prkng | Roads |  |
| B1.2.32 16.13.02.6 |  | Dropped Curb, Type K3 | 1d | 2026-12-06 | 2026-12-07 | B1.2.32 16.13.01.7, 32 16 13.007 |  | 66d | 0d | Dropped Curb, Type K3 [27.09]; Labor [31.18 h]; Foreman [15.59 h]; Mason [15.59 h]; Operator [31.18 h]; Surveyor [15.59 h]; Surveyor Helper [15.59 h]; JCB [16 h] | 2,188.45 |  | 0.00127894651074864 | Cons. | Z2 | Roads | Cons | Prkng | Roads |  |
| B1.2.32 16.13.03.7 |  | Edge Curb, Type K4 | 1d | 2026-12-07 | 2026-12-08 | B1.2.32 16.13.02.6, 32 16 13.007 |  | 66d | 0d | Edge Curb, Type K4 [1191.05]; Labor [62.37 h]; Foreman [31.18 h]; Mason [31.18 h]; Operator [62.37 h]; Surveyor [31.18 h]; Surveyor Helper [31.18 h]; JCB [32 h] | 89,933.96 |  | 0.0495274998162851 | Cons. | Z2 | Roads | Cons | Prkng | Roads |  |
| B1.2.32 16.13.047 |  | Heel Curb, Type K5 | 1d | 2026-12-07 | 2026-12-08 | B1.2.32 16.13.03.7 SS, 32 16 13.007 |  | 66d | 0d | Heel Curb, Type K5 [792.91]; Labor [46.78 h]; Foreman [23.39 h]; Mason [23.39 h]; Operator [46.78 h]; Surveyor [23.39 h]; Surveyor Helper [23.39 h]; JCB [24 h] | 50,820.64 |  | 0.0267475251657987 | Cons. | Z2 | Roads | Cons | Prkng | Roads |  |
| B1.2.32 16.13.05.6 |  | Transition Curb | 1d | 2026-12-08 | 2026-12-09 | B1.2.32 16.13.047, 32 16 13.007 |  | 66d | 0d | Transition Curb [8.57]; Labor [31.18 h]; Foreman [15.59 h]; Mason [15.59 h]; Operator [31.18 h]; Surveyor [15.59 h]; Surveyor Helper [15.59 h]; JCB [16 h] | 691.89 |  | 0.000420315656774444 | Cons. | Z2 | Roads | Cons | Prkng | Roads |  |
|  | Finishing | **Finishing** |  | 2026-12-09 | 2026-12-10 |  |  |  |  |  |  |  |  |  |  |  |  |  |  |  |
| 32 16 13.07 |  | Finishing, Fareface | 1d | 2026-12-09 | 2026-12-10 | B1.2.32 16.13.01.7, B1.2.32 16.13.02.6, B1.2.32 16.13.03.7, B1.2.32 16.13.047, B1.2.32 16.13.05.6 |  | 66d | 15.09d | Curb Stone, Type K1 [447.1]; Dropped Curb, Type K3 [0.34]; Edge Curb, Type K4 [269.35]; Heel Curb, Type K5 [176.2]; Transition Curb [2.86]; Labor [124.74 h]; Mason [62.37 h] | 65,648.96 |  | 0.0372121403691665 | Cons. | Z2 | Roads | Cons | Prkng | Roads |  |

| ID | WBS | Activity | Duration | Start | Finish | Predecessors | Complete | Remaining | Planned start | Planned finish | Total float | Free float | Resources | Cost | Actual cost | Weight % | DMM2 Weekly Progress | DMM2 Zones | Networks & Stations | DMM2 Phases | Networks Components | Dmm2 Roads | Yellow Sheet |
| --- | --- | --- | --- | --- | --- | --- | --- | --- | --- | --- | --- | --- | --- | --- | --- | --- | --- | --- | --- | --- | --- | --- | --- |
|  | Asphalt Layers | **Asphalt Layers** |  | 2026-06-15 | 2026-12-19 |  |  |  |  |  |  |  |  |  |  |  |  |  |  |  |  |  |  |
| B1.2.32 11 26.01.7 |  | Bituminous Base Course including Prime Coat (MC1) and tack coat (RC2) (60.00% Completed) | 79.38d | 2026-06-15 A | 2026-09-15 A | B1.2.32 11 23.01.7 SS | 100% |  |  |  |  |  | Bituminous base course(Grading I - Class A) [3925.56]; Labor [46.78 h]; Foreman [23.39 h]; Operator [46.78 h]; Surveyor [23.39 h]; Surveyor Helper [23.39 h]; Dump Truck [24 h]; Roller Compactor [24 h]; MC1/RC2 Sprayer [24 h] | 2,157,596.86 | 2,157,596.86 | 1.98368355477725 | Cons. | Z2 | Roads | Cons | Roads | Prkng | BBC |
| B1.2.32 11 26.01.7_R |  | Bituminous Base Course including Prime Coat (MC1) and tack coat (RC2)(Rem) | 2d | 2026-10-01 A | 2026-10-22 | B1.2.32 11 23.01.7_R SS, B1.2.32 11 26.01.7 | 21% | 1.58d | 2026-09-16 | 2026-09-17 | 54.74d | 42.83d | Bituminous base course(Grading I - Class A) [2617.04]; Labor [31.18 h]; Foreman [15.59 h]; Operator [31.18 h]; Surveyor [15.59 h]; Surveyor Helper [15.59 h]; Dump Truck [16 h]; Roller Compactor [16 h]; MC1/RC2 Sprayer [16 h] | 1,438,397.91 | 302,063.56 | 1.98368355477725 | Cons. | Z2 | Roads | Cons | Roads | Prkng | BBC |
| B1.2.32 12 16.01.7 |  | Bituminous concrete Wearing Course, including tack coat (RC2) | 2d | 2026-12-16 | 2026-12-19 | B1.2.32 11 26.01.7_R, B1.2.32 12 16.01.5 |  |  |  |  | 8d | 0d | Bituminous concrete wearing course, after compaction(Grading I - Class A), including tack coat (RC2) [2393.95]; Labor [62.37 h]; Foreman [31.18 h]; Operator [62.37 h]; Surveyor [31.18 h]; Surveyor Helper [31.18 h]; Dump Truck [32 h]; Roller Compactor [32 h]; MC1/RC2 Sprayer [32 h] | 1,412,469.75 |  | 0.778765371436372 | Cons. | Z2 | Roads | Cons | Roads | Prkng | BWC |
|  | Pavement Marking | **Pavement Marking** |  | 2026-12-19 | 2026-12-21 |  |  |  |  |  |  |  |  |  |  |  |  |  |  |  |  |  |  |
| B1.2.32 17 23.01.7 |  | Retroreflective Thermoplastic White Traffic lines | 2d | 2026-12-19 | 2026-12-21 | B1.2.32 12 16.01.7 |  |  |  |  | 38d | 3d | Retroreflective Thermoplastic White Traffic lines [811.5]; Labor [46.78 h]; Mason [23.39 h]; Road Marking Machine [24 h] | 24,224.96 |  | 0.0121790897774246 | Cons. | Z2 | Roads | Cons | Roads | Prkng |  |
| B1.2.32 17 23.02.7 |  | Retroreflective Thermoplastic Yellow, Traffic lines | 2d | 2026-12-19 | 2026-12-21 | B1.2.32 12 16.01.7 |  |  |  |  | 38d | 3d | Retroreflective Thermoplastic Yellow, Traffic lines [388.94]; Labor [31.18 h]; Mason [15.59 h]; Road Marking Machine [16 h] | 11,610.76 |  | 0.00583730657585546 | Cons. | Z2 | Roads | Cons | Roads | Prkng |  |
|  | Traffic Signs | **Traffic Signs** |  | 2026-11-29 | 2026-12-27 |  |  |  |  |  |  |  |  |  |  |  |  |  |  |  |  |  |  |
|  | Pre Install | **Pre-Installation** |  | 2026-11-29 | 2026-12-03 |  |  |  |  |  |  |  |  |  |  |  |  |  |  |  |  |  |  |
| B2.31 23 00.191 |  | Excavation | 2d | 2026-11-29 | 2026-12-01 | B2.31 23 00.181 |  |  |  |  | 13d | 0d | Traffic signs, ground mounted, 1 Sheet Alumenium, (breakaway) Single post [5]; Labor [46.78 h]; Foreman [23.39 h]; Operator [46.78 h]; Surveyor [23.39 h]; Surveyor Helper [23.39 h]; JCB [24 h]; Water Tanker [24 h]; Dump Truck [24 h]; Plate Compactor [24 h] | 5,579.7 |  | 0.00280519428565594 | Cons. | Z2 | Roads | Cons | Roads | Prkng |  |
| 10 14 53.07 |  | Foundation | 2d | 2026-12-01 | 2026-12-03 | B2.31 23 00.191 |  |  |  |  | 53d | 12d | Traffic signs, ground mounted, 1 Sheet Alumenium, (breakaway) Single post [5]; Labor [93.55 h]; Carpenter [46.78 h]; Steelfixer [46.78 h]; Mason [46.78 h]; Surveyor [46.78 h]; Surveyor Helper [46.78 h] | 5,579.7 |  | 0.00280519428565594 | Cons. | Z2 | Roads | Cons | Roads | Prkng |  |
|  | Installation | **Installation** |  | 2026-12-24 | 2026-12-27 |  |  |  |  |  |  |  |  |  |  |  |  |  |  |  |  |  |  |
| B1.2.10 14 53.017 |  | 1 Sheet Alumenium, Single post | 2d | 2026-12-24 | 2026-12-27 | B1.2.32 17 23.01.7, B1.2.32 17 23.02.7, 10 14 53.07, B1.2.10 14 14.01.3 |  |  |  |  | 35d | 0d | Traffic signs, ground mounted, 1 Sheet Alumenium, (breakaway) Single post [1.4]; Labor [46.78 h]; Foreman [23.39 h]; Operator [46.78 h]; JCB [24 h] | 1,562.32 |  | 0.000785454399983663 | Cons. | Z2 | Roads | Cons | Roads | Prkng |  |
|  | Road Misc. | **Miscellaneous** |  | 2026-12-19 | 2026-12-21 |  |  |  |  |  |  |  |  |  |  |  |  |  |  |  |  |  |  |
| B1.2.32 12 19.13.6 |  | Wheels stoppers (precast concrete) | 2d | 2026-12-19 | 2026-12-21 | B1.2.32 12 16.01.7 |  |  |  |  | 15d | 0d | Wheels stopper (precast concrete) [88]; Labor [93.55 h]; Foreman [46.78 h]; Operator [93.55 h]; Boom Truck [48 h] | 15,298.31 |  | 0.00769122033568356 | Cons. | Z2 | Roads | Cons | Roads | Prkng |  |
|  | Landscape | **Landscape** |  | 2026-12-01 | 2026-12-24 |  |  |  |  |  |  |  |  |  |  |  |  |  |  |  |  |  |  |
|  | Fences | **Fences** |  | 2026-12-01 | 2026-12-22 |  |  |  |  |  |  |  |  |  |  |  |  |  |  |  |  |  |  |
|  | (ZATCA HCIS) | **Steel fence (ZATCA HCIS)** |  | 2026-12-01 | 2026-12-19 |  |  |  |  |  |  |  |  |  |  |  |  |  |  |  |  |  |  |
| B7.32 93 43.02.14 |  | Earthwork | 5d | 2026-12-01 | 2026-12-07 | B2.31 23 00.191 |  |  |  |  | 13d | 0d | Labor [93.55 h]; Foreman [46.78 h]; Operator [93.55 h]; Surveyor [46.78 h]; Surveyor Helper [46.78 h]; Excavator (With Bucket) [48 h]; Water Tanker [48 h]; Dump Truck [48 h]; Plate Compactor [48 h]; Steel fence (ZATCA HCIS) [116.81] | 25,743.45 |  | 0.0145109845928078 | Cons. | Z2 | Landscp | Cons | Fncs&Gt | Prkng | ZTK.Fns |
| B7.32 93 43.02.16 |  | Foundation | 5d | 2026-12-07 | 2026-12-13 | B7.32 93 43.02.14 |  |  |  |  | 16d | 0d | Labor [93.55 h]; Laboratory Officer [46.78 h]; Carpenter [46.78 h]; Steelfixer [46.78 h]; Mason [46.78 h]; Surveyor [46.78 h]; Surveyor Helper [46.78 h]; Steel fence (ZATCA HCIS) [116.81] | 25,743.45 |  | 0.0145109845928078 | Cons. | Z2 | Landscp | Cons | Fncs&Gt | Prkng | ZTK.Fns |
| B7.32 93 43.02.18 |  | Fence Installation | 5d | 2026-12-13 | 2026-12-19 | B7.32 93 43.02.16 |  |  |  |  | 16d | 3d | Labor [93.55 h]; Foreman [46.78 h]; Welder [46.78 h]; Mason [46.78 h]; Operator [93.55 h]; Boom Truck [48 h]; Welding Machine [48 h]; Steel fence (ZATCA HCIS) [545.13] | 120,135.44 |  | 0.0677175587789433 | Cons. | Z2 | Landscp | Cons | Fncs&Gt | Prkng | ZTK.Fns |
|  | (MODON) fence | **Steel fence (MODON)** |  | 2026-12-07 | 2026-12-22 |  |  |  |  |  |  |  |  |  |  |  |  |  |  |  |  |  |  |
| B7.32 93 43.02.20 |  | Earthwork | 5d | 2026-12-07 | 2026-12-13 | B7.32 93 43.02.14 |  |  |  |  | 13d | 0d | Labor [93.55 h]; Foreman [46.78 h]; Operator [93.55 h]; Surveyor [46.78 h]; Surveyor Helper [46.78 h]; Excavator (With Bucket) [48 h]; Water Tanker [48 h]; Dump Truck [48 h]; Plate Compactor [48 h]; Steel fence (MODON) [93.38] | 70,343.16 |  | 0.0387026561597213 | Cons. | Z2 | Landscp | Cons | Fncs&Gt | Prkng | Mod.Fns |
| B7.32 93 43.02.22 |  | Foundation | 5d | 2026-12-13 | 2026-12-19 | B7.32 93 43.02.20 |  |  |  |  | 13d | 0d | Labor [155.92 h]; Laboratory Officer [77.96 h]; Carpenter [77.96 h]; Steelfixer [77.96 h]; Mason [77.96 h]; Surveyor [77.96 h]; Surveyor Helper [77.96 h]; Steel fence (MODON) [93.37] | 70,336.27 |  | 0.0386988688364846 | Cons. | Z2 | Landscp | Cons | Fncs&Gt | Prkng | Mod.Fns |
| B7.32 93 43.02.24 |  | Fence Installation | 3d | 2026-12-19 | 2026-12-22 | B7.32 93 43.02.22 |  |  |  |  | 13d | 0d | Labor [124.74 h]; Foreman [62.37 h]; Welder [62.37 h]; Mason [62.37 h]; Operator [124.74 h]; Boom Truck [64 h]; Welding Machine [64 h]; Steel fence (MODON) [435.76] | 328,263.48 |  | 0.180609870529875 | Cons. | Z2 | Landscp | Cons | Fncs&Gt | Prkng | Mod.Fns |

| ID | WBS | Activity | Duration | Start | Finish | Predecessors | Complete | Remaining | Planned start | Planned finish | Total float | Free float | Resources | Cost | Actual cost | Weight % | DMM2 Weekly Progress | DMM2 Zones | Networks & Stations | DMM2 Phases | Networks Components | Dmm2 Roads | Yellow Sheet | UNASCO | Subcontractors works |
| --- | --- | --- | --- | --- | --- | --- | --- | --- | --- | --- | --- | --- | --- | --- | --- | --- | --- | --- | --- | --- | --- | --- | --- | --- | --- |
|  | Trees | **Trees** |  | 2026-12-19 | 2026-12-24 |  |  |  |  |  |  |  |  |  |  |  |  |  |  |  |  |  |  |  |  |
| B7.32 93 43.02.10 |  | Ceratonia Siliqua | 3d | 2026-12-19 | 2026-12-22 | B1.2.32 12 16.01.7, B7.32 93 43.02 |  |  |  |  | 17d | 0d | Labor [124.74 h]; Operator [124.74 h]; Surveyor [62.37 h]; Surveyor Helper [62.37 h]; JCB [64 h]; Water Tanker [64 h]; Landscape Specialist [62.37 h]; Ceratonia Siliqua [57] | 59,454.57 |  | 0.0298907644046512 | Cons. | Z2 | Landscp | Cons | Lndscp | Prkng | Lndscp |  |  |
| B7.32 93 43.02.12 |  | Milettia pinnata/ Pongamia glabra | 3d | 2026-12-19 | 2026-12-22 | B7.32 93 43.02.10 FF, B1.2.32 12 16.01.7 |  |  |  |  | 17d | 2d | Labor [93.55 h]; Operator [93.55 h]; Surveyor [46.78 h]; Surveyor Helper [46.78 h]; JCB [48 h]; Water Tanker [48 h]; Landscape Specialist [46.78 h]; Milettia pinnata/ Pongamia glabra [18] | 27,119.77 |  | 0.0136344541486541 | Cons. | Z2 | Landscp | Cons | Lndscp | Prkng | Lndscp |  |  |
| B7.32 93 43.7 |  | Azadirachta indica | 3d | 2026-12-21 | 2026-12-24 | B7.32 93 43.02.12 FF, B1.2.32 12 16.01.7, B1.2.32 12 19.13.6 |  |  |  |  | 15d | 12d | Labor [233.89 h]; Operator [233.89 h]; Surveyor [116.94 h]; Surveyor Helper [116.94 h]; JCB [120 h]; Water Tanker [120 h]; Landscape Specialist [116.94 h]; Azadirachta indica [151] | 131,252.56 |  | 0.0659871744709216 | Cons. | Z2 | Landscp | Cons | Lndscp | Prkng | Lndscp |  |  |
|  | Arterial Road | **Arterial Road** |  | 2026-03-15 | 2026-12-06 |  |  |  |  |  |  |  |  |  |  |  |  |  |  |  |  |  |  |  |  |
|  | Wet Networks | **Wet Networks** |  | 2026-03-15 | 2026-12-06 |  |  |  |  |  |  |  |  |  |  |  |  |  |  |  |  |  |  |  |  |
|  | Sewerage Network | **Sewerage Network** |  | 2026-04-08 | 2026-12-06 |  |  |  |  |  |  |  |  |  |  |  |  |  |  |  |  |  |  |  |  |
|  | HDPE | **HDPE Pipes** |  | 2026-04-08 | 2026-10-21 |  |  |  |  |  |  |  |  |  |  |  |  |  |  |  |  |  |  |  |  |
|  | 1 | **?160** |  | 2026-04-08 | 2026-10-21 |  |  |  |  |  |  |  |  |  |  |  |  |  |  |  |  |  |  |  |  |
|  | 3 | **Depth From 1.5m to 2.5m** |  | 2026-04-08 | 2026-10-21 |  |  |  |  |  |  |  |  |  |  |  |  |  |  |  |  |  |  |  |  |
| B5.33 31 23.021 |  | Excavation (0.00% Completed) | 134d | 2026-04-08 A | 2026-09-15 A | B6. 33 42 13.011 SS | 100% |  |  |  |  |  | Labor; Foreman; Operator; Surveyor; Surveyor Helper; Excavator (With Bucket); Water Tanker; Dump Truck; Plate Compactor; Sew HDPE Dia. 160 mm depth: 1.5 - 2.5m |  |  | 0.00638346282982792 | Cons. | Z2 | Sew | Cons | GRPs | Art | Art.Rd | CS.UNSC | SUB.C |
| B5.33 31 23.022 |  | Sand Bedding (0.00% Completed) | 107.05d | 2026-05-09 A | 2026-09-15 A | B5.33 31 23.021 FF | 100% |  |  |  |  |  | Labor; Foreman; Operator; Surveyor; Surveyor Helper; Loader; Water Tanker; Dump Truck; Plate Compactor; Sew HDPE Dia. 160 mm depth: 1.5 - 2.5m |  |  | 0.00159594084591488 | Cons. | Z2 | Sew | Cons | GRPs | Art | Art.Rd | CS.UNSC | SUB.C |
| B5.33 31 23.023 |  | Pipe Laying (0.00% Completed) | 80.05d | 2026-06-14 A | 2026-09-15 A | B5.33 31 23.022 FF | 100% |  |  |  |  |  | Labor; Foreman; Plumber Helper; Plumber; Operator; Surveyor; Surveyor Helper; Mobile Crane; Sew HDPE Dia. 160 mm depth: 1.5 - 2.5m; Pipe encasement dia 160mm; Pipe encasement dia 150mm |  |  | 0.0274728508935756 | Cons. | Z2 | Sew | Cons | GRPs | Art | Art.Rd | CS.UNSC | SUB.C |
| B5.33 31 23.024 |  | Embedment & Test (0.00% Completed) | 77.23d | 2026-06-17 A | 2026-09-15 A | B5.33 31 23.023 FF | 100% |  |  |  |  |  | Labor; Foreman; Plumber Helper; Plumber; Operator; Surveyor; Surveyor Helper; Loader; Water Tanker; Dump Truck; Plate Compactor; Roller Compactor; Sew HDPE Dia. 160 mm depth: 1.5 - 2.5m |  |  | 0.00638346282982792 | Cons. | Z2 | Sew | Cons | GRPs | Art | Art.Rd | CS.UNSC | SUB.C |
| B5.33 31 23.025 |  | Backfilling & Warrning Tape (0.00% Completed) | 73.23d | 2026-06-22 A | 2026-09-15 A | B5.33 31 00.01.02.59, B5.33 31 00.01.02119, B5.33 31 23.024 FF | 100% |  |  |  |  |  | Labor; Foreman; Operator; Surveyor; Surveyor Helper; Loader; Water Tanker; Dump Truck; Plate Compactor; Roller Compactor; Sew HDPE Dia. 160 mm depth: 1.5 - 2.5m |  |  | 0.00319158113799813 | Cons. | Z2 | Sew | Cons | GRPs | Art | Art.Rd | CS.UNSC | SUB.C |
| B5.33 31 23.021_R |  | Excavation(Rem) | 3d | 2026-10-07 A | 2026-10-10 A | B6. 33 42 13.011 SS, B5.33 31 23.021 | 100% |  |  |  |  |  | Labor [46.78 h]; Foreman [23.39 h]; Operator [46.78 h]; Surveyor [23.39 h]; Surveyor Helper [23.39 h]; Excavator (With Bucket) [24 h]; Water Tanker [24 h]; Dump Truck [24 h]; Plate Compactor [24 h]; Sew HDPE Dia. 160 mm depth: 1.5 - 2.5m [159.4] | 16,794.3 | 16,794.3 | 0.00638346282982792 | Cons. | Z2 | Sew | Cons | GRPs | Art | Art.Rd | CS.UNSC | SUB.C |
| B5.33 31 23.024_R |  | Embedment & Test(Rem) | 4d | 2026-10-07 A | 2026-10-21 | B5.33 31 23.023_R FF, B5.33 31 23.024 | 80% | 0.8d | 2026-10-07 | 2026-10-11 | 94.52d | 0d | Labor [62.37 h]; Foreman [31.18 h]; Plumber Helper [31.18 h]; Plumber [31.18 h]; Operator [62.37 h]; Surveyor [31.18 h]; Surveyor Helper [31.18 h]; Loader [32 h]; Water Tanker [32 h]; Dump Truck [32 h]; Plate Compactor [32 h]; Roller Compactor [32 h]; Sew HDPE Dia. 160 mm depth: 1.5 - 2.5m [159.4] | 16,794.3 | 13,435.44 | 0.00638346282982792 | Cons. | Z2 | Sew | Cons | GRPs | Art | Art.Rd | CS.UNSC | SUB.C |
| B5.33 31 23.025_R |  | Backfilling & Warrning Tape(Rem) | 5d | 2026-10-07 A | 2026-10-12 A | B5.33 31 00.01.02.59, B5.33 31 00.01.02119, B5.33 31 23.024_R FF, B5.33 31 23.025 | 100% |  |  |  |  |  | Labor [77.96 h]; Foreman [38.98 h]; Operator [155.92 h]; Surveyor [38.98 h]; Surveyor Helper [38.98 h]; Loader [40 h]; Water Tanker [40 h]; Dump Truck [40 h]; Plate Compactor [40 h]; Roller Compactor [40 h]; Sew HDPE Dia. 160 mm depth: 1.5 - 2.5m [79.7] | 8,396.75 | 8,396.75 | 0.00319158113799813 | Cons. | Z2 | Sew | Cons | GRPs | Art | Art.Rd | CS.UNSC | SUB.C |
| B5.33 31 23.022_R |  | Sand Bedding(Rem) | 2d | 2026-10-08 A | 2026-10-10 A | B5.33 31 23.021_R FF, B5.33 31 23.022 | 100% |  |  |  |  |  | Labor [31.18 h]; Foreman [15.59 h]; Operator [62.37 h]; Surveyor [15.59 h]; Surveyor Helper [15.59 h]; Loader [16 h]; Water Tanker [16 h]; Dump Truck [16 h]; Plate Compactor [16 h]; Sew HDPE Dia. 160 mm depth: 1.5 - 2.5m [39.85] | 4,198.77 | 4,198.77 | 0.00159594084591488 | Cons. | Z2 | Sew | Cons | GRPs | Art | Art.Rd | CS.UNSC | SUB.C |
| B5.33 31 23.023_R |  | Pipe Laying(Rem) | 2d | 2026-10-08 A | 2026-10-10 A | B5.33 31 23.022_R FF, B5.33 31 23.023 | 100% |  |  |  |  |  | Labor [31.18 h]; Foreman [15.59 h]; Plumber Helper [15.59 h]; Plumber [15.59 h]; Operator [15.59 h]; Surveyor [15.59 h]; Surveyor Helper [15.59 h]; Mobile Crane [16 h]; Sew HDPE Dia. 160 mm depth: 1.5 - 2.5m [358.65]; Pipe encasement dia 160mm [40]; Pipe encasement dia 150mm [10] | 63,863.93 | 63,863.93 | 0.0274728508935756 | Cons. | Z2 | Sew | Cons | GRPs | Art | Art.Rd | CS.UNSC | SUB.C |
|  | 2 | **Valves & Chambers** |  | 2026-06-14 | 2026-12-06 |  |  |  |  |  |  |  |  |  |  |  |  |  |  |  |  |  |  |  |  |
|  | Gate | **Gate Valves** |  | 2026-06-14 | 2026-10-25 |  |  |  |  |  |  |  |  |  |  |  |  |  |  |  |  |  |  |  |  |
| B3.33 14 19.01.1 |  | Burried Isolation Valve Installation (0.00% Completed) | 80.05d | 2026-06-14 A | 2026-09-15 A | B5.33 31 23.023 SS | 100% |  |  |  |  |  | Labor; Plumber Helper; Plumber; Operator; Boom Truck; Gate V dia 150 mm on Dia. 160 mm |  |  | 0.000445320593853839 | Cons. | Z2 | Sew | Cons |  | Art | Art.Rd | CS.UNSC | SUB.C |
| B3.33 14 19.01.1_R |  | Burried Isolation Valve Installation(Rem) | 2d | 2026-10-21 | 2026-10-22 | B5.33 31 23.023_R SS, B3.33 14 19.01.1 |  |  |  |  | 105.32d | 0d | Labor [31.18 h]; Plumber Helper [15.59 h]; Plumber [15.59 h]; Operator [31.18 h]; Boom Truck [16 h]; Gate V dia 150 mm on Dia. 160 mm [0.75] | 2,334.05 |  | 0.000445320593853839 | Cons. | Z2 | Sew | Cons |  | Art | Art.Rd | CS.UNSC | SUB.C |
| B3.33 14 19.01.7 |  | Spindle & Surface Box | 2d | 2026-10-24 | 2026-10-25 | B3.33 14 19.01.1_R |  |  |  |  | 105.32d | 31.23d | Labor [31.18 h]; Foreman [15.59 h]; Plumber Helper [15.59 h]; Plumber [15.59 h]; Operator [31.18 h]; JCB [16 h]; Gate V dia 150 mm on Dia. 160 mm [0.25] | 793.57 |  | 0.000151408613890224 | Cons. | Z2 | Sew | Cons |  | Art | Art.Rd | CS.UNSC | SUB.C |

| ID | WBS | Activity | Duration | Start | Finish | Predecessors | Complete | Remaining | Planned start | Planned finish | Total float | Free float | Resources | Cost | Actual cost | Weight % | DMM2 Weekly Progress | DMM2 Zones | Networks & Stations | DMM2 Phases | UNASCO | Subcontractors works | Dmm2 Roads | Yellow Sheet | Networks Components |
| --- | --- | --- | --- | --- | --- | --- | --- | --- | --- | --- | --- | --- | --- | --- | --- | --- | --- | --- | --- | --- | --- | --- | --- | --- | --- |
|  | Air V in Ch1 | **Air Valves in Chambers** |  | 2026-10-21 | 2026-12-06 |  |  |  |  |  |  |  |  |  |  |  |  |  |  |  |  |  |  |  |  |
| B3.33 14 19.01.26 |  | Land Adjustment & Compaction | 3d | 2026-10-21 | 2026-10-25 | B5.33 31 23.024_R, B5.33 31 00.01.2209_R |  |  |  |  | 94.52d | 0d | Labor [31.18 h]; Foreman [15.59 h]; Operator [62.37 h]; Surveyor [15.59 h]; Surveyor Helper [15.59 h]; Excavator (With Bucket) [16 h]; Water Tanker [16 h]; Dump Truck [16 h]; Plate Compactor [16 h]; Air valve chamber; on 160 mm dia pipeline [0.15] | 2,409.37 |  | 0.000460297013510644 | Cons. | Z2 | Sew | Cons | CS.UNSC | SUB.C | Art | Art.Rd |  |
| B3.33 14 19.01.28 |  | Foundations | 4d | 2026-10-25 | 2026-10-29 | B3.33 14 19.01.26 |  |  |  |  | 94.52d | 0d | Labor [46.78 h]; Foreman [23.39 h]; Laboratory Officer [23.39 h]; Carpenter [23.39 h]; Steelfixer [23.39 h]; Mason [23.39 h]; Operator [46.78 h]; Mobile Crane [24 h]; Air valve chamber; on 160 mm dia pipeline [0.19] | 3,132.18 |  | 0.000598386117563837 | Cons. | Z2 | Sew | Cons | CS.UNSC | SUB.C | Art | Art.Rd |  |
| B3.33 14 19.01.30 |  | Chambers Walls Conc Cast In Situ | 3d | 2026-10-29 | 2026-11-02 | B3.33 14 19.01.28 |  |  |  |  | 94.52d | 0d | Labor [46.78 h]; Foreman [23.39 h]; Laboratory Officer [23.39 h]; Carpenter [23.39 h]; Steelfixer [23.39 h]; Mason [23.39 h]; Operator [46.78 h]; Mobile Crane [24 h]; Air valve chamber; on 160 mm dia pipeline [0.46] | 7,469.03 |  | 0.00142692074188299 | Cons. | Z2 | Sew | Cons | CS.UNSC | SUB.C | Art | Art.Rd |  |
| B3.33 14 19.01.32 |  | Chamber Curing, Finishing & Steel Cover | 4d | 2026-11-02 | 2026-11-07 | B3.33 14 19.01.30 |  |  |  |  | 94.52d | 20.43d | Labor [62.36 h]; Mason [31.18 h]; Air valve chamber; on 160 mm dia pipeline [0.19] | 3,132.18 |  | 0.000598386117563837 | Cons. | Z2 | Sew | Cons | CS.UNSC | SUB.C | Art | Art.Rd |  |
| B3.33 14 19.01.33 |  | Valve & Fitting Installation | 4d | 2026-12-01 | 2026-12-06 | B3.33 14 19.01.32, B3.33 14 19.01.7, B5.33 31 00.01.0244, DMM2-Proc-Delv-2308, B5..33 31 16.015 |  |  |  |  | 74.1d | 0d | Labor [62.37 h]; Plumber Helper [31.18 h]; Plumber [31.18 h]; Operator [62.37 h]; Boom Truck [32 h]; Air V with dia (50) mm on pipes with dia(160 ) mm. [1] | 18,649.68 |  | 0.00356292541542865 | Cons. | Z2 | Sew | Cons | CS.UNSC | SUB.C | Art | Art.Rd |  |
|  | Stormwater Network | **Stormwater Network** |  | 2026-03-15 | 2026-11-11 |  |  |  |  |  |  |  |  |  |  |  |  |  |  |  |  |  |  |  |  |
|  | Box Cul. | **Box Cul.** |  | 2026-03-15 | 2026-11-11 |  |  |  |  |  |  |  |  |  |  |  |  |  |  |  |  |  |  |  |  |
| B6. 33 42 13.011 |  | Excavation | 125.75d | 2026-03-15 A | 2026-08-19 A | B6.33 42 11.31-1 2 | 100% |  |  |  |  |  | Labor [70.87 h]; Foreman [35.44 h]; Operator [70.87 h]; Surveyor [35.44 h]; Surveyor Helper [35.44 h]; Excavator (With Bucket) [40 h]; Water Tanker [40 h]; Dump Truck [40 h]; Plate Compactor [40 h]; Concrete for box culvert [167.7] | 242,947.61 | 242,947.61 | 0.109250288859142 | Cons. | Z2 | Storm | Cons |  | SUB.C | Art | Box.Cul | Box.Cul |
| B6. 33 42 13.012 |  | Lean PC & RC Foundation | 105.5d | 2026-05-09 A | 2026-09-13 A | B6. 33 42 13.011, DMM2-Proc-PO-148 | 100% |  |  |  |  |  | Labor [56.7 h]; Laboratory Officer [28.35 h]; Carpenter [28.35 h]; Steelfixer [28.35 h]; Mason [28.35 h]; Operator [56.7 h]; Surveyor [28.35 h]; Surveyor Helper [28.35 h]; Mobile Crane [32 h]; Concrete for box culvert [223.6]; Steel Reinforcement for box culverts [37.2] | 474,794.39 | 474,794.39 | 0.206833940948998 | Cons. | Z2 | Storm | Cons |  | SUB.C | Art | Box.Cul | Box.Cul |
| B6. 33 42 13.013 |  | Box Reinforced Conc. Walls incl. Water Stop (92.00% Completed) | 85.56d | 2026-06-08 A | 2026-09-15 A | B6.33 05 63.061, B6. 33 42 13.012 SS | 100% |  |  |  |  |  | Labor [100.41 h]; Laboratory Officer [50.21 h]; Carpenter [50.21 h]; Steelfixer [50.21 h]; Mason [50.21 h]; Operator [100.41 h]; Surveyor [50.21 h]; Surveyor Helper [50.21 h]; Mobile Crane [51.52 h]; Concrete for box culvert [205.71]; Steel Reinforcement for box culverts [34.22] | 436,810.84 | 436,810.84 | 0.206833940948998 | Cons. | Z2 | Storm | Cons |  | SUB.C | Art | Box.Cul | Box.Cul |
| B6. 33 42 13.014 |  | Box Reinforced Conc. Slab (92.00% Completed) | 82.21d | 2026-06-11 A | 2026-09-15 A | B6. 33 42 13.013 SS | 100% |  |  |  |  |  | Labor [71.72 h]; Laboratory Officer [35.86 h]; Carpenter [35.86 h]; Steelfixer [35.86 h]; Mason [35.86 h]; Operator [71.72 h]; Surveyor [35.86 h]; Surveyor Helper [35.86 h]; Mobile Crane [36.8 h]; Concrete for box culvert [205.71]; Steel Reinforcement for box culverts [34.22] | 436,810.84 | 436,810.84 | 0.206833940948998 | Cons. | Z2 | Storm | Cons |  | SUB.C | Art | Box.Cul | Box.Cul |
| B6. 33 42 13.015 |  | Curing & Water Proofing (11.00% Completed) | 5.3d | 2026-09-09 A | 2026-09-15 A | B6. 33 42 13.014 SS | 100% |  |  |  |  |  | Labor [6.86 h]; Mason [3.43 h]; Concrete for box culvert [12.3] | 17,816.16 | 17,816.16 | 0.0728335259060941 | Cons. | Z2 | Storm | Cons |  | SUB.C | Art | Box.Cul | Box.Cul |
| B6. 33 42 13.013_R |  | Box Reinforced Conc. Walls incl. Water Stop(Rem) | 3d | 2026-09-22 A | 2026-10-14 A | B6.33 05 63.061, B6. 33 42 13.012 SS, B6. 33 42 13.013 | 100% |  | 2026-09-16 | 2026-09-19 |  |  | Labor [8.73 h]; Laboratory Officer [4.37 h]; Carpenter [4.37 h]; Steelfixer [4.37 h]; Mason [4.37 h]; Operator [8.73 h]; Surveyor [4.37 h]; Surveyor Helper [4.37 h]; Mobile Crane [4.48 h]; Concrete for box culvert [17.89]; Steel Reinforcement for box culverts [2.98] | 37,983.55 | 37,983.55 | 0.206833940948998 | Cons. | Z2 | Storm | Cons |  | SUB.C | Art | Box.Cul | Box.Cul |
| B6. 33 42 13.014_R |  | Box Reinforced Conc. Slab(Rem) | 3d | 2026-09-29 A | 2026-10-14 A | B6. 33 42 13.013_R SS, B6. 33 42 13.014 | 100% |  | 2026-09-16 | 2026-09-19 |  |  | Labor [6.24 h]; Laboratory Officer [3.12 h]; Carpenter [3.12 h]; Steelfixer [3.12 h]; Mason [3.12 h]; Operator [6.24 h]; Surveyor [3.12 h]; Surveyor Helper [3.12 h]; Mobile Crane [3.2 h]; Concrete for box culvert [17.89]; Steel Reinforcement for box culverts [2.98] | 37,983.55 | 37,983.55 | 0.206833940948998 | Cons. | Z2 | Storm | Cons |  | SUB.C | Art | Box.Cul | Box.Cul |
| B6. 33 42 13.015_R |  | Curing & Water Proofing(Rem) | 4.56d | 2026-10-03 A | 2026-10-21 | B6. 33 42 13.014_R SS, B6. 33 42 13.015 | 80% | 0.91d | 2026-09-16 | 2026-09-21 | 101.41d | 6.37d | Labor [55.51 h]; Mason [27.75 h]; Concrete for box culvert [99.5] | 144,148.92 | 115,319.13 | 0.0728335259060941 | Cons. | Z2 | Storm | Cons |  | SUB.C | Art | Box.Cul | Box.Cul |
| B6. 33 42 13.016 |  | Backfilling & Warrning Tape | 6d | 2026-10-29 | 2026-11-05 | B6. 33 42 13.015_R, B6.33 05 63.054, B6.33 05 63.064, B6.33 42 11.03-114_R |  |  |  |  | 95.04d | 0d | Labor [77.96 h]; Foreman [38.98 h]; Operator [155.92 h]; Surveyor [38.98 h]; Surveyor Helper [38.98 h]; Loader [40 h]; Water Tanker [40 h]; Dump Truck [40 h]; Plate Compactor [40 h]; Roller Compactor [40 h]; Concrete for box culvert [167.7] | 242,947.61 |  | 0.109250288859142 | Cons. | Z2 | Storm | Cons |  | SUB.C | Art | Box.Cul | Box.Cul |
|  | Conc. Ch | **Concrete Chambers** |  | 2026-09-07 | 2026-11-11 |  |  |  |  |  |  |  |  |  |  |  |  |  |  |  |  |  |  |  |  |
|  | Conc. Ch 2.53.5 | **Size 1.5 x 1.5 m, depth 2.5 to 3.5** |  | 2026-09-07 | 2026-11-11 |  |  |  |  |  |  |  |  |  |  |  |  |  |  |  |  |  |  |  |  |
| B6.33 05 63.051 |  | Shuttering, Steel Fixing, CJ & Water Stop | 4d | 2026-09-07 A | 2026-09-12 A | B6.33 05 63.062, B6.33 05 63.052 | 100% |  |  |  |  |  | Labor [70.87 h]; Carpenter [35.44 h]; Steelfixer [35.44 h]; Operator [70.87 h]; Boom Truck [40 h]; Size 1.5 x 1.5 m, depth 2.51-3.5 m [0.45] | 7,037.89 | 7,037.89 | 0.00179273759576774 | Cons. | Z2 | Storm | Cons |  | SUB.C | Art | Box.Cul | Box.Cul |
| B6.33 05 63.052 |  | Cocrete Cast for Chamber & Curing | 0.8d | 2026-09-12 A | 2026-09-13 A | B6. 33 42 13.012 SS | 100% |  |  |  |  |  | Labor [56.7 h]; Mason [28.35 h]; Operator [56.7 h]; Size 1.5 x 1.5 m, depth 2.51-3.5 m [1.65] | 25,864.32 | 25,864.32 | 0.00658832754853754 | Cons. | Z2 | Storm | Cons |  | SUB.C | Art | Box.Cul | Box.Cul |
| B6.33 05 63.054 |  | Waterproofing Tanking Membrane & Protection | 4d | 2026-10-14 A | 2026-10-25 | B6. 33 42 13.015_R | 19% | 3.24d | 2026-10-14 | 2026-10-19 | 99.08d | 4.04d | Labor [46.78 h]; Mason [23.39 h]; Size 1.5 x 1.5 m, depth 2.51-3.5 m [0.45] | 7,037.89 | 1,337.2 | 0.00179273759576774 | Cons. | Z2 | Storm | Cons |  | SUB.C | Art | Box.Cul | Box.Cul |
| B6.33 05 63.053 |  | Cast Iron Steps Installation, Epoxy Paint & Internal Finishing | 5d | 2026-11-05 | 2026-11-11 | B6.33 05 63.052, B6.33 05 63.064, B6.33 05 63.054, B6. 33 42 13.015_R, B6. 33 42 13.016, B6.33 42 11.13.305, B6.33 05 39.01.3967, B6.33 05 40.01.560_R |  |  |  |  | 95.04d |  | Labor [62.37 h]; Mason [31.18 h]; Size 1.5 x 1.5 m, depth 2.51-3.5 m [0.46] | 7,213.84 |  | 0.00183755603566193 | Cons. | Z2 | Storm | Cons |  | SUB.C | Art | Box.Cul | Box.Cul |
|  | Conc. Ch 3.54.5 | **Size 1.5 x 1.5 m, depth 3.5 to 4.5** |  | 2026-09-09 | 2026-11-11 |  |  |  |  |  |  |  |  |  |  |  |  |  |  |  |  |  |  |  |  |
| B6.33 05 63.062 |  | Cocrete Cast for Chamber & Curing | 2.8d | 2026-09-09 A | 2026-09-13 A | B6.33 05 63.052, B6. 33 42 13.012 SS | 100% |  |  |  |  |  | Labor [56.7 h]; Mason [28.35 h]; Operator [56.7 h]; Size 1.5 x 1.5 m, depth 3.51-4.5 m [1.66] | 33,386 | 33,386 | 0.00425214950391258 | Cons. | Z2 | Storm | Cons |  | SUB.C | Art | Box.Cul | Box.Cul |
| B6.33 05 63.061 |  | Shuttering, Steel Fixing, CJ & Water Stop | 1d | 2026-09-14 A | 2026-09-15 A | B6.33 05 63.062, B6.33 05 63.052, B6.33 05 63.051 | 100% |  |  |  |  |  | Labor [70.87 h]; Carpenter [35.44 h]; Steelfixer [35.44 h]; Operator [70.87 h]; Boom Truck [40 h]; Size 1.5 x 1.5 m, depth 3.51-4.5 m [0.45] | 9,023.22 | 9,023.22 | 0.00114922665048925 | Cons. | Z2 | Storm | Cons |  | SUB.C | Art | Box.Cul | Box.Cul |
| B6.33 05 63.064 |  | Waterproofing Tanking Membrane & Protection | 4d | 2026-10-19 A | 2026-10-25 | B6. 33 42 13.015_R, B6.33 05 63.054 | 19% | 3.24d | 2026-10-19 | 2026-10-24 | 99.08d | 4.04d | Labor [46.78 h]; Mason [23.39 h]; Size 1.5 x 1.5 m, depth 3.51-4.5 m [0.45] | 9,023.22 | 1,714.41 | 0.00114922665048925 | Cons. | Z2 | Storm | Cons |  | SUB.C | Art | Box.Cul | Box.Cul |
| B6.33 05 63.063 |  | Cast Iron Steps Installation, Epoxy Paint & Internal Finishing | 5d | 2026-11-05 | 2026-11-11 | B6.33 05 63.062, B6.33 05 63.054, B6. 33 42 13.015_R, B6. 33 42 13.016, B6.33 05 40.01.440_R, B6.33 42 11.13.255_R, B1.2.31 23 16.01.8 |  |  |  |  | 95.04d |  | Labor [62.37 h]; Mason [31.18 h]; Size 1.5 x 1.5 m, depth 3.51-4.5 m [0.45] | 9,023.22 |  | 0.00114922665048925 | Cons. | Z2 | Storm | Cons |  | SUB.C | Art | Box.Cul | Box.Cul |

| ID | WBS | Activity | Duration | Start | Finish | Predecessors | Complete | Total float | Free float | Resources | Cost | Weight % | DMM2 Weekly Progress | DMM2 Zones | Networks & Stations | DMM2 Phases | UNASCO | Networks Components | Subcontractors works | Dmm2 Roads | Yellow Sheet |
| --- | --- | --- | --- | --- | --- | --- | --- | --- | --- | --- | --- | --- | --- | --- | --- | --- | --- | --- | --- | --- | --- |
|  | Potable Water | **Potable Water Network** |  | 2026-06-03 | 2026-11-01 |  |  |  |  |  |  |  |  |  |  |  |  |  |  |  |  |
|  | HDPE | **HDPE Pipes** |  | 2026-06-03 | 2026-10-31 |  |  |  |  |  |  |  |  |  |  |  |  |  |  |  |  |
|  | ?250mm | **?250mm** |  | 2026-06-03 | 2026-10-31 |  |  |  |  |  |  |  |  |  |  |  |  |  |  |  |  |
|  | Depth: 0.0m - 1.5m | **Depth: 0.0m - 1.5m** |  | 2026-06-03 | 2026-10-28 |  |  |  |  |  |  |  |  |  |  |  |  |  |  |  |  |
| B3.33 14 11.01.011 |  | Excavation (0.00% Completed) | 89.92d | 2026-06-03 A | 2026-09-15 A | B1.2.32 11 26.01.8 SS | 100% |  |  | Labor; Foreman; Operator; Surveyor; Surveyor Helper; Excavator (With Bucket); Water Tanker; Dump Truck; Plate Compactor; Depth: 0.0m - 1.5m |  | 0.00567047468785543 | Cons. | Z2 | Potable | Cons | CS.UNSC | HDPEs | SUB.C | Art | Art.Rd |
| B3.33 14 11.01.012 |  | Sand Bedding (0.00% Completed) | 83.92d | 2026-06-10 A | 2026-09-15 A | B3.33 14 11.01.011 FF | 100% |  |  | Labor; Foreman; Operator; Surveyor; Surveyor Helper; Loader; Water Tanker; Dump Truck; Plate Compactor; Depth: 0.0m - 1.5m |  | 0.00141830120382324 | Cons. | Z2 | Potable | Cons | CS.UNSC | HDPEs | SUB.C | Art | Art.Rd |
| B3.33 14 11.01.013 |  | Pipe Laying (0.00% Completed) | 81.92d | 2026-06-13 A | 2026-09-15 A | B3.33 14 11.01.012 FF | 100% |  |  | Labor; Foreman; Plumber Helper; Plumber; Operator; Surveyor; Surveyor Helper; Mobile Crane; Depth: 0.0m - 1.5m |  | 0.0127592505795341 | Cons. | Z2 | Potable | Cons | CS.UNSC | HDPEs | SUB.C | Art | Art.Rd |
| B3.33 14 11.01.014 |  | Embedment & Test (0.00% Completed) | 79.92d | 2026-06-15 A | 2026-09-15 A | B3.33 14 11.01.013 FF | 100% |  |  | Labor; Foreman; Plumber Helper; Plumber; Operator; Surveyor; Surveyor Helper; Loader; Water Tanker; Dump Truck; Plate Compactor; Roller Compactor; Depth: 0.0m - 1.5m |  | 0.00567074770059917 | Cons. | Z2 | Potable | Cons | CS.UNSC | HDPEs | SUB.C | Art | Art.Rd |
| B3.33 14 11.01.015 |  | Backfilling & Warrning Tape (0.00% Completed) | 77d | 2026-06-18 A | 2026-09-15 A | B3.33 14 11.01.014 SS, B3.33 14 11.01.024 FF+2d | 100% |  |  | Labor; Foreman; Operator; Surveyor; Surveyor Helper; Loader; Water Tanker; Dump Truck; Plate Compactor; Roller Compactor; Depth: 0.0m - 1.5m |  | 0.0028352373439277 | Cons. | Z2 | Potable | Cons | CS.UNSC | HDPEs | SUB.C | Art | Art.Rd |
| B3.33 14 11.01.011_R |  | Excavation(Rem) | 3d | 2026-10-21 | 2026-10-24 | B1.2.32 11 26.01.8_R SS, B3.33 14 11.01.011 |  | 96.32d | 0d | Labor [31.18 h]; Foreman [15.59 h]; Operator [31.18 h]; Surveyor [15.59 h]; Surveyor Helper [15.59 h]; Excavator (With Bucket) [16 h]; Water Tanker [16 h]; Dump Truck [16 h]; Plate Compactor [16 h]; Depth: 0.0m - 1.5m [92.75] | 44,383.29 | 0.00567047468785543 | Cons. | Z2 | Potable | Cons | CS.UNSC | HDPEs | SUB.C | Art | Art.Rd |
| B3.33 14 11.01.012_R |  | Sand Bedding(Rem) | 3d | 2026-10-21 | 2026-10-24 | B3.33 14 11.01.011_R FF, B3.33 14 11.01.012 |  | 98.32d | 0d | Labor [31.18 h]; Foreman [15.59 h]; Operator [62.37 h]; Surveyor [15.59 h]; Surveyor Helper [15.59 h]; Loader [16 h]; Water Tanker [16 h]; Dump Truck [16 h]; Plate Compactor [16 h]; Depth: 0.0m - 1.5m [23.2] | 11,101.16 | 0.00141830120382324 | Cons. | Z2 | Potable | Cons | CS.UNSC | HDPEs | SUB.C | Art | Art.Rd |
| B3.33 14 11.01.013_R |  | Pipe Laying(Rem) | 3d | 2026-10-21 | 2026-10-24 | B3.33 14 11.01.012_R FF, B3.33 14 11.01.013 |  | 98.32d | 2d | Labor [31.18 h]; Foreman [15.59 h]; Plumber Helper [15.59 h]; Plumber [15.59 h]; Operator [15.59 h]; Surveyor [15.59 h]; Surveyor Helper [15.59 h]; Mobile Crane [16 h]; Depth: 0.0m - 1.5m [208.92] | 99,971.32 | 0.0127592505795341 | Cons. | Z2 | Potable | Cons | CS.UNSC | HDPEs | SUB.C | Art | Art.Rd |
| B3.33 14 11.01.014_R |  | Embedment & Test(Rem) | 5d | 2026-10-21 | 2026-10-26 | B3.33 14 11.01.013_R FF, B3.33 14 11.01.014 |  | 96.32d | 1d | Labor [62.37 h]; Foreman [31.18 h]; Plumber Helper [31.18 h]; Plumber [31.18 h]; Operator [62.37 h]; Surveyor [31.18 h]; Surveyor Helper [31.18 h]; Loader [32 h]; Water Tanker [32 h]; Dump Truck [32 h]; Plate Compactor [32 h]; Roller Compactor [32 h]; Depth: 0.0m - 1.5m [92.76] | 44,385.42 | 0.00567074770059917 | Cons. | Z2 | Potable | Cons | CS.UNSC | HDPEs | SUB.C | Art | Art.Rd |
| B3.33 14 11.01.015_R |  | Backfilling & Warrning Tape(Rem) | 6d | 2026-10-22 | 2026-10-28 | B3.33 14 11.01.014_R SS, B3.33 14 11.01.024_R FF+2d, B3.33 14 11.01.015 |  | 95.32d | 1.8d | Labor [77.96 h]; Foreman [38.98 h]; Operator [155.92 h]; Surveyor [38.98 h]; Surveyor Helper [38.98 h]; Loader [40 h]; Water Tanker [40 h]; Dump Truck [40 h]; Plate Compactor [40 h]; Roller Compactor [40 h]; Depth: 0.0m - 1.5m [46.38] | 22,191.64 | 0.0028352373439277 | Cons. | Z2 | Potable | Cons | CS.UNSC | HDPEs | SUB.C | Art | Art.Rd |
|  | Depth: 1.51m - 2.5m | **Depth: 1.51m - 2.5m** |  | 2026-06-03 | 2026-10-31 |  |  |  |  |  |  |  |  |  |  |  |  |  |  |  |  |
| B3.33 14 11.01.021 |  | Excavation (0.00% Completed) | 89.92d | 2026-06-03 A | 2026-09-15 A | B3.33 14 11.01.011 SS | 100% |  |  | Labor; Foreman; Operator; Surveyor; Surveyor Helper; Excavator (With Bucket); Water Tanker; Dump Truck; Plate Compactor; Depth: 1.51m - 2.5m |  | 0.0153769042807987 | Cons. | Z2 | Potable | Cons | CS.UNSC | HDPEs | SUB.C | Art | Art.Rd |
| B3.33 14 11.01.022 |  | Sand Bedding (0.00% Completed) | 83.92d | 2026-06-10 A | 2026-09-15 A | B3.33 14 11.01.021 FF | 100% |  |  | Labor; Foreman; Operator; Surveyor; Surveyor Helper; Loader; Water Tanker; Dump Truck; Plate Compactor; Depth: 1.51m - 2.5m |  | 0.00384497121966087 | Cons. | Z2 | Potable | Cons | CS.UNSC | HDPEs | SUB.C | Art | Art.Rd |
| B3.33 14 11.01.023 |  | Pipe Laying (0.00% Completed) | 81.92d | 2026-06-13 A | 2026-09-15 A | B3.33 14 11.01.022 FF | 100% |  |  | Labor; Foreman; Plumber Helper; Plumber; Operator; Surveyor; Surveyor Helper; Mobile Crane; Depth: 1.51m - 2.5m |  | 0.0345987797812583 | Cons. | Z2 | Potable | Cons | CS.UNSC | HDPEs | SUB.C | Art | Art.Rd |
| B3.33 14 11.01.024 |  | Embedment & Test (0.00% Completed) | 79.92d | 2026-06-15 A | 2026-09-15 A | B3.33 14 11.01.023 FF | 100% |  |  | Labor; Foreman; Plumber Helper; Plumber; Operator; Surveyor; Surveyor Helper; Loader; Water Tanker; Dump Truck; Plate Compactor; Roller Compactor; Depth: 1.51m - 2.5m |  | 0.0153769042807987 | Cons. | Z2 | Potable | Cons | CS.UNSC | HDPEs | SUB.C | Art | Art.Rd |
| B3.33 14 11.01.025 |  | Backfilling & Warrning Tape (0.00% Completed) | 77d | 2026-06-18 A | 2026-09-15 A | B3.33 14 11.01.015 SS | 100% |  |  | Labor; Foreman; Operator; Surveyor; Surveyor Helper; Loader; Water Tanker; Dump Truck; Plate Compactor; Roller Compactor; Depth: 1.51m - 2.5m |  | 0.00768845214039937 | Cons. | Z2 | Potable | Cons | CS.UNSC | HDPEs | SUB.C | Art | Art.Rd |
| B3.33 14 11.01.021_R |  | Excavation(Rem) | 4d | 2026-10-21 | 2026-10-25 | B3.33 14 11.01.011_R SS, B3.33 14 11.01.021 |  | 96.32d | 0d | Labor [46.78 h]; Foreman [23.39 h]; Operator [46.78 h]; Surveyor [23.39 h]; Surveyor Helper [23.39 h]; Excavator (With Bucket) [24 h]; Water Tanker [24 h]; Dump Truck [24 h]; Plate Compactor [24 h]; Depth: 1.51m - 2.5m [104] | 54,329.03 | 0.0153769042807987 | Cons. | Z2 | Potable | Cons | CS.UNSC | HDPEs | SUB.C | Art | Art.Rd |
| B3.33 14 11.01.023_R |  | Pipe Laying(Rem) | 4d | 2026-10-21 | 2026-10-25 | B3.33 14 11.01.022_R FF, B3.33 14 11.01.023 |  | 96.32d | 1d | Labor [46.78 h]; Foreman [23.39 h]; Plumber Helper [23.39 h]; Plumber [23.39 h]; Operator [23.39 h]; Surveyor [23.39 h]; Surveyor Helper [23.39 h]; Mobile Crane [24 h]; Depth: 1.51m - 2.5m [234] | 122,242.94 | 0.0345987797812583 | Cons. | Z2 | Potable | Cons | CS.UNSC | HDPEs | SUB.C | Art | Art.Rd |
| B3.33 14 11.01.024_R |  | Embedment & Test(Rem) | 5d | 2026-10-21 | 2026-10-26 | B3.33 14 11.01.023_R FF, B3.33 14 11.01.024 |  | 95.32d | 0d | Labor [62.37 h]; Foreman [31.18 h]; Plumber Helper [31.18 h]; Plumber [31.18 h]; Operator [62.37 h]; Surveyor [31.18 h]; Surveyor Helper [31.18 h]; Loader [32 h]; Water Tanker [32 h]; Dump Truck [32 h]; Plate Compactor [32 h]; Roller Compactor [32 h]; Depth: 1.51m - 2.5m [104] | 54,329.03 | 0.0153769042807987 | Cons. | Z2 | Potable | Cons | CS.UNSC | HDPEs | SUB.C | Art | Art.Rd |
| B3.33 14 11.01.022_R |  | Sand Bedding(Rem) | 3d | 2026-10-22 | 2026-10-25 | B3.33 14 11.01.021_R FF, B3.33 14 11.01.022 |  | 96.32d | 0d | Labor [31.18 h]; Foreman [15.59 h]; Operator [62.37 h]; Surveyor [15.59 h]; Surveyor Helper [15.59 h]; Loader [16 h]; Water Tanker [16 h]; Dump Truck [16 h]; Plate Compactor [16 h]; Depth: 1.51m - 2.5m [26] | 13,584.89 | 0.00384497121966087 | Cons. | Z2 | Potable | Cons | CS.UNSC | HDPEs | SUB.C | Art | Art.Rd |
| B3.33 14 11.01.025_R |  | Backfilling & Warrning Tape(Rem) | 6d | 2026-10-24 | 2026-10-31 | B3.33 14 11.01.015_R SS, B3.33 14 11.01.025, B3.33 14 11.01.0118_R |  | 93.52d | 0d | Labor [77.96 h]; Foreman [38.98 h]; Operator [155.92 h]; Surveyor [38.98 h]; Surveyor Helper [38.98 h]; Loader [40 h]; Water Tanker [40 h]; Dump Truck [40 h]; Plate Compactor [40 h]; Roller Compactor [40 h]; Depth: 1.51m - 2.5m [52] | 27,164.51 | 0.00768845214039937 | Cons. | Z2 | Potable | Cons | CS.UNSC | HDPEs | SUB.C | Art | Art.Rd |

| ID | WBS | Activity | Duration | Start | Finish | Predecessors | Complete | Total float | Free float | Resources | Cost | Actual cost | Weight % | DMM2 Weekly Progress | DMM2 Zones | Networks & Stations | DMM2 Phases | UNASCO | Networks Components | Subcontractors works | Dmm2 Roads | Yellow Sheet |
| --- | --- | --- | --- | --- | --- | --- | --- | --- | --- | --- | --- | --- | --- | --- | --- | --- | --- | --- | --- | --- | --- | --- |
|  | Valves & Chambers | **Valves & Chambers** |  | 2026-06-08 | 2026-10-26 |  |  |  |  |  |  |  |  |  |  |  |  |  |  |  |  |  |
|  | Air Valves | **Air Valves** |  | 2026-06-08 | 2026-10-26 |  |  |  |  |  |  |  |  |  |  |  |  |  |  |  |  |  |
|  | 4 | **Air valves on less than 315 mm. (In Chamber)** |  | 2026-06-08 | 2026-10-26 |  |  |  |  |  |  |  |  |  |  |  |  |  |  |  |  |  |
| B3.33 05 63.02.17 |  | Land Adjustment & Compaction | 16.62d | 2026-06-08 A | 2026-06-27 A | B3.33 14 11.01.011 FF, B6. 33 42 13.011 | 100% |  |  | Labor [28.35 h]; Foreman [14.17 h]; Operator [56.7 h]; Surveyor [14.17 h]; Surveyor Helper [14.17 h]; Excavator (With Bucket) [16 h]; Water Tanker [16 h]; Dump Truck [16 h]; Plate Compactor [16 h]; POT Air valve Dia. 50 mm on pipes with Dia. less than 315 mm [0.24]; Air valve chamber; on less than 315 mm Dia. pipeline [0.18] | 4,549.72 | 4,549.72 | 0.000888448059942745 | Cons. | Z2 | Potable | Cons | CS.UNSC | Val&Chs | SUB.C | Art | Art.Rd |
| B3.33 05 63.02.15 |  | Foundations | 3d | 2026-09-09 A | 2026-09-12 A | B3.33 05 63.02.17 | 100% |  |  | Labor [42.52 h]; Foreman [21.26 h]; Laboratory Officer [21.26 h]; Carpenter [21.26 h]; Steelfixer [21.26 h]; Mason [21.26 h]; POT Air valve Dia. 50 mm on pipes with Dia. less than 315 mm [0.06]; Air valve chamber; on less than 315 mm Dia. pipeline [0.24] | 5,389.08 | 5,389.08 | 0.00105235404675599 | Cons. | Z2 | Potable | Cons | CS.UNSC | Val&Chs | SUB.C | Art | Art.Rd |
| B3.33 05 63.02.18 |  | Chambers Walls Conc Cast In Situ | 1d | 2026-09-13 A | 2026-09-13 A | B3.33 05 63.02.15 | 100% |  |  | Labor [42.52 h]; Foreman [21.26 h]; Laboratory Officer [21.26 h]; Carpenter [21.26 h]; Steelfixer [21.26 h]; Mason [21.26 h]; POT Air valve Dia. 50 mm on pipes with Dia. less than 315 mm [0.52]; Air valve chamber; on less than 315 mm Dia. pipeline [0.24] | 6,600.26 | 6,600.26 | 0.00128886622145969 | Cons. | Z2 | Potable | Cons | CS.UNSC | Val&Chs | SUB.C | Art | Art.Rd |
| B3.33 05 63.02.16 |  | Chamber Curing, Finishing & Steel Cover | 2d | 2026-09-14 A | 2026-09-15 A | B3.33 05 63.02.18 | 100% |  |  | Labor [56.7 h]; Mason [28.35 h]; POT Air valve Dia. 50 mm on pipes with Dia. less than 315 mm [0.24]; Air valve chamber; on less than 315 mm Dia. pipeline [0.18] | 4,549.72 | 4,549.72 | 0.000888448059942745 | Cons. | Z2 | Potable | Cons | CS.UNSC | Val&Chs | SUB.C | Art | Art.Rd |
| B3.33 05 63.02.19 |  | Valve & Fitting Installation | 5d | 2026-10-21 | 2026-10-26 | B3.33 05 63.02.16 |  | 67.32d | 2d | Labor [62.37 h]; Plumber Helper [31.18 h]; Plumber [31.18 h]; Operator [62.37 h]; Boom Truck [32 h]; POT Air valve Dia. 50 mm on pipes with Dia. less than 315 mm [0.12]; Air valve chamber; on less than 315 mm Dia. pipeline [0.34] | 7,834.72 |  | 0.00152992514844024 | Cons. | Z2 | Potable | Cons | CS.UNSC | Val&Chs | SUB.C | Art | Art.Rd |
|  | 3 | **Flow Meter (On Chamber)** |  | 2026-10-21 | 2026-11-01 |  |  |  |  |  |  |  |  |  |  |  |  |  |  |  |  |  |
| B3.33 14 19.01.fm16 |  | RC Conc. Works | 4d | 2026-10-21 | 2026-10-25 | B3.33 05 63.02.18 |  | 58.32d | 0d | Labor [46.78 h]; Foreman [23.39 h]; Laboratory Officer [23.39 h]; Carpenter [23.39 h]; Steelfixer [23.39 h]; Mason [23.39 h]; Flow meter chamber [0.21]; Flow meter [0.2] | 12,460.81 |  | 0.00241612645842662 | Cons. | Z2 | Potable | Cons | CS.UNSC | Val&Chs | SUB.C | Art | Art.Rd |
| B3.33 14 19.01.fm17 |  | Fixing Flange/Connections | 3d | 2026-10-26 | 2026-10-28 | B3.33 14 19.01.fm16 |  | 65.32d | 0d | Labor [31.18 h]; Plumber Helper [15.59 h]; Plumber [15.59 h]; Flow meter chamber [0.21]; Flow meter [0.2] | 12,460.81 |  | 0.00241612645842662 | Cons. | Z2 | Potable | Cons | CS.UNSC | Val&Chs | SUB.C | Art | Art.Rd |
| B3.33 14 19.01.fm18 |  | Flow Meter Installation | 3d | 2026-10-29 | 2026-11-01 | B3.33 14 19.01.fm16, B3.33 14 19.01.fm17, B3.33 05 63.02.19, DMM2-Proc-Delv-3648 |  | 65.32d | 23d | Labor [31.18 h]; Plumber Helper [15.59 h]; Plumber [15.59 h]; Flow meter chamber [0.59]; Flow meter [0.6] | 36,786.79 |  | 0.00712950368112511 | Cons. | Z2 | Potable | Cons | CS.UNSC | Val&Chs | SUB.C | Art | Art.Rd |
|  | Fire Fighting | **Fire Fighting Network** |  | 2026-10-26 | 2026-11-09 |  |  |  |  |  |  |  |  |  |  |  |  |  |  |  |  |  |
|  | 3 | **Flow Meter (On Chamber)** |  | 2026-10-26 | 2026-11-09 |  |  |  |  |  |  |  |  |  |  |  |  |  |  |  |  |  |
| B3.33 14 19.01.fm50 |  | RC Conc. Works | 5d | 2026-10-26 | 2026-10-31 | B3.33 14 19.01.fm16 |  | 58.32d | 0d | Labor [46.78 h]; Foreman [23.39 h]; Laboratory Officer [23.39 h]; Carpenter [23.39 h]; Steelfixer [23.39 h]; Mason [23.39 h]; FF Flow meter chamber; FF Flow meter |  |  | 0.00226487761127988 | Cons. | Z2 | Fire | Cons | CS.UNSC | FH | SUB.C | Art | Art.Rd |
| B3.33 14 19.01.fm49 |  | Fixing Flange/Connections | 4d | 2026-11-01 | 2026-11-04 | B3.33 14 19.01.fm50 |  | 58.32d | 0d | Labor [31.18 h]; Plumber Helper [15.59 h]; Plumber [15.59 h]; FF Flow meter chamber; FF Flow meter |  |  | 0.00226487761127988 | Cons. | Z2 | Fire | Cons | CS.UNSC | FH | SUB.C | Art | Art.Rd |
| B3.33 14 19.01.fm51 |  | Flow Meter Installation | 4d | 2026-11-05 | 2026-11-09 | B3.33 14 19.01.fm50, B3.33 14 19.01.fm49 |  | 58.32d | 19.41d | Labor [31.18 h]; Plumber Helper [15.59 h]; Plumber [15.59 h]; FF Flow meter chamber; FF Flow meter |  |  | 0.00696885418855345 | Cons. | Z2 | Fire | Cons | CS.UNSC | FH | SUB.C | Art | Art.Rd |
|  | TSE Network | **TSE Network** |  | 2026-09-09 | 2026-11-02 |  |  |  |  |  |  |  |  |  |  |  |  |  |  |  |  |  |
|  | HDPE | **HDPE Pipes** |  | 2026-09-09 | 2026-11-02 |  |  |  |  |  |  |  |  |  |  |  |  |  |  |  |  |  |
|  | ?125mm | **?125mm** |  | 2026-09-09 | 2026-11-02 |  |  |  |  |  |  |  |  |  |  |  |  |  |  |  |  |  |
|  | Depth: 0.0m - 1.5m | **Depth: 0.0m - 1.5m** |  | 2026-09-09 | 2026-11-02 |  |  |  |  |  |  |  |  |  |  |  |  |  |  |  |  |  |
| B4.33 14 13.081 |  | Excavation (21.50% Completed) | 6d | 2026-09-09 A | 2026-09-15 A | B3.33 05 63.02.17 | 100% |  |  | Labor [6.7 h]; Foreman [3.35 h]; Operator [6.7 h]; Surveyor [3.35 h]; Surveyor Helper [3.35 h]; Excavator (With Bucket) [3.44 h]; Water Tanker [3.44 h]; Dump Truck [3.44 h]; Plate Compactor [3.44 h]; Dia. 125mm 0.0m - 1.5m [17.37] | 2,684.39 | 2,684.39 | 0.00360324608999108 | Cons. | Z2 | TSE | Cons | CS.UNSC | HDPEs | SUB.C | Art | Art.Rd |
| B4.33 14 13.082 |  | Sand Bedding (21.50% Completed) | 4d | 2026-09-12 A | 2026-09-15 A | B4.33 14 13.081 FF | 100% |  |  | Labor [6.7 h]; Foreman [3.35 h]; Operator [13.41 h]; Surveyor [3.35 h]; Surveyor Helper [3.35 h]; Loader [3.44 h]; Water Tanker [3.44 h]; Dump Truck [3.44 h]; Plate Compactor [3.44 h]; Dia. 125mm 0.0m - 1.5m [4.34] | 671.26 | 671.26 | 0.000901031931482963 | Cons. | Z2 | TSE | Cons | CS.UNSC | HDPEs | SUB.C | Art | Art.Rd |
| B4.33 14 13.083 |  | Pipe Laying (21.50% Completed) | 2d | 2026-09-14 A | 2026-09-15 A | B4.33 14 13.082 FF | 100% |  |  | Labor [6.7 h]; Foreman [3.35 h]; Plumber Helper [3.35 h]; Plumber [3.35 h]; Operator [3.35 h]; Surveyor [3.35 h]; Surveyor Helper [3.35 h]; Mobile Crane [3.44 h]; Dia. 125mm 0.0m - 1.5m [39.09] | 6,040.04 | 6,040.04 | 0.00810752411146515 | Cons. | Z2 | TSE | Cons | CS.UNSC | HDPEs | SUB.C | Art | Art.Rd |
| B4.33 14 13.084 |  | Embedment & Test (21.50% Completed) | 1d | 2026-09-15 A | 2026-09-15 A | B4.33 14 13.083 FF | 100% |  |  | Labor [13.41 h]; Foreman [6.7 h]; Plumber Helper [6.7 h]; Plumber [6.7 h]; Operator [13.41 h]; Surveyor [6.7 h]; Surveyor Helper [6.7 h]; Loader [6.88 h]; Water Tanker [6.88 h]; Dump Truck [6.88 h]; Plate Compactor [6.88 h]; Roller Compactor [6.88 h]; Dia. 125mm 0.0m - 1.5m [17.37] | 2,684.39 | 2,684.39 | 0.00360324608999108 | Cons. | Z2 | TSE | Cons | CS.UNSC | HDPEs | SUB.C | Art | Art.Rd |
| B4.33 14 13.081_R |  | Excavation(Rem) | 2.57d | 2026-10-21 | 2026-10-24 | B3.33 05 63.02.17, B4.33 14 13.081 |  | 32.75d | 0d | Labor [24.48 h]; Foreman [12.24 h]; Operator [24.48 h]; Surveyor [12.24 h]; Surveyor Helper [12.24 h]; Excavator (With Bucket) [12.56 h]; Water Tanker [12.56 h]; Dump Truck [12.56 h]; Plate Compactor [12.56 h]; Dia. 125mm 0.0m - 1.5m [63.43] | 9,801.15 |  | 0.00360324608999108 | Cons. | Z2 | TSE | Cons | CS.UNSC | HDPEs | SUB.C | Art | Art.Rd |
| B4.33 14 13.082_R |  | Sand Bedding(Rem) | 2.57d | 2026-10-21 | 2026-10-24 | B4.33 14 13.081_R FF, B4.33 14 13.082 |  | 32.75d | 0d | Labor [24.48 h]; Foreman [12.24 h]; Operator [48.96 h]; Surveyor [12.24 h]; Surveyor Helper [12.24 h]; Loader [12.56 h]; Water Tanker [12.56 h]; Dump Truck [12.56 h]; Plate Compactor [12.56 h]; Dia. 125mm 0.0m - 1.5m [15.86] | 2,450.89 |  | 0.000901031931482963 | Cons. | Z2 | TSE | Cons | CS.UNSC | HDPEs | SUB.C | Art | Art.Rd |
| B4.33 14 13.083_R |  | Pipe Laying(Rem) | 2.57d | 2026-10-21 | 2026-10-24 | B4.33 14 13.082_R FF, B4.33 14 13.083 |  | 32.75d | 1.57d | Labor [24.48 h]; Foreman [12.24 h]; Plumber Helper [12.24 h]; Plumber [12.24 h]; Operator [12.24 h]; Surveyor [12.24 h]; Surveyor Helper [12.24 h]; Mobile Crane [12.56 h]; Dia. 125mm 0.0m - 1.5m [142.71] | 22,053.19 |  | 0.00810752411146515 | Cons. | Z2 | TSE | Cons | CS.UNSC | HDPEs | SUB.C | Art | Art.Rd |
| B4.33 14 13.084_R |  | Embedment & Test(Rem) | 4.14d | 2026-10-21 | 2026-10-26 | B4.33 14 13.083_R FF, B4.33 14 13.084 |  | 31.18d | 0d | Labor [48.96 h]; Foreman [24.48 h]; Plumber Helper [24.48 h]; Plumber [24.48 h]; Operator [48.96 h]; Surveyor [24.48 h]; Surveyor Helper [24.48 h]; Loader [25.12 h]; Water Tanker [25.12 h]; Dump Truck [25.12 h]; Plate Compactor [25.12 h]; Roller Compactor [25.12 h]; Dia. 125mm 0.0m - 1.5m [63.43] | 9,801.15 |  | 0.00360324608999108 | Cons. | Z2 | TSE | Cons | CS.UNSC | HDPEs | SUB.C | Art | Art.Rd |
| B4.33 14 13.085 |  | Backfilling & Warrning Tape | 6d | 2026-10-26 | 2026-11-02 | B4.33 14 13.084_R, B3.33 14 19.01.141 |  | 31.18d | 0d | Labor [77.96 h]; Foreman [38.98 h]; Operator [155.92 h]; Surveyor [38.98 h]; Surveyor Helper [38.98 h]; Loader [40 h]; Water Tanker [40 h]; Dump Truck [40 h]; Plate Compactor [40 h]; Roller Compactor [40 h]; Dia. 125mm 0.0m - 1.5m [40.4] | 6,242.77 |  | 0.00180162304499554 | Cons. | Z2 | TSE | Cons | CS.UNSC | HDPEs | SUB.C | Art | Art.Rd |

| ID | WBS | Activity | Duration | Start | Finish | Predecessors | Complete | Remaining | Planned start | Planned finish | Total float | Free float | Resources | Cost | Actual cost | Weight % | DMM2 Weekly Progress | DMM2 Zones | Networks & Stations | DMM2 Phases | Networks Components | All Electrical Scope | Subcontractors works | Dmm2 Roads | Yellow Sheet |
| --- | --- | --- | --- | --- | --- | --- | --- | --- | --- | --- | --- | --- | --- | --- | --- | --- | --- | --- | --- | --- | --- | --- | --- | --- | --- |
|  | Dry Networks | **Dry Networks** |  | 2026-08-26 | 2026-11-22 |  |  |  |  |  |  |  |  |  |  |  |  |  |  |  |  |  |  |  |  |
|  | MV | **Medium Voltage Network** |  | 2026-09-06 | 2026-11-22 |  |  |  |  |  |  |  |  |  |  |  |  |  |  |  |  |  |  |  |  |
|  | Cables | **Cables** |  | 2026-09-06 | 2026-11-22 |  |  |  |  |  |  |  |  |  |  |  |  |  |  |  |  |  |  |  |  |
|  | 3C,500mm2 | **3C,500mm2** |  | 2026-09-06 | 2026-11-04 |  |  |  |  |  |  |  |  |  |  |  |  |  |  |  |  |  |  |  |  |
| B2.33 71 19 16 |  | Land Adjustment (68.00% Completed) | 9d | 2026-09-06 A | 2026-09-15 A | B6. 33 42 13.011 | 100% |  |  |  |  |  | Labor [21.21 h]; Foreman [10.6 h]; Operator [21.21 h]; Surveyor [5.3 h]; Surveyor Helper [5.3 h]; Excavator (With Bucket) [10.88 h]; Water Tanker [10.88 h]; Dump Truck [10.88 h]; Roller Compactor [10.88 h]; Cable 13.8 kV 3Cx 500 mm² Al XLPE,/LLDPE / Unarmored [1700.04] | 583,619.29 | 583,619.29 | 0.164036550642653 | Cons. | Z2 | MV | Cons | Cbl&Dct | allElec | SUB.C | Art | Art.Rd |
| B2.33 71 49.23.010 |  | Cable Pulling (60.00% Completed) | 6d | 2026-09-09 A | 2026-09-15 A | B2.33 71 19 16 SS | 100% |  |  |  |  |  | Labor [37.42 h]; Foreman [18.71 h]; Surveyor [18.71 h]; Surveyor Helper [18.71 h]; Electrician [18.71 h]; Cable 13.8 kV 3Cx 500 mm² Al XLPE,/LLDPE / Unarmored [409.08] | 140,435 | 140,435 | 0.0447354604976501 | Cons. | Z2 | MV | Cons | Cbl&Dct | allElec | SUB.C | Art | Art.Rd |
| B2.33 71 19 17 |  | Backfilling (20.00% Completed) | 2d | 2026-09-14 A | 2026-09-15 A | B2.33 71 49.23.010 SS | 100% |  |  |  |  |  | Labor [15.59 h]; Foreman [7.8 h]; Operator [15.59 h]; Surveyor [7.8 h]; Surveyor Helper [7.8 h]; Loader [8 h]; Water Tanker [8 h]; Dump Truck [8 h]; Plate Compactor [8 h]; Cable 13.8 kV 3Cx 500 mm² Al XLPE,/LLDPE / Unarmored [500.01] | 171,652.73 | 171,652.73 | 0.164036550642653 | Cons. | Z2 | MV | Cons | Cbl&Dct | allElec | SUB.C | Art | Art.Rd |
| B2.33 71 19 16_R |  | Land Adjustment(Rem) | 3d | 2026-10-29 | 2026-11-02 | B4.33 14 13.085 FF, B2.33 71 19 16 |  |  |  |  | 31.18d | 0d | Labor [9.98 h]; Foreman [4.99 h]; Operator [9.98 h]; Surveyor [2.49 h]; Surveyor Helper [2.49 h]; Excavator (With Bucket) [5.12 h]; Water Tanker [5.12 h]; Dump Truck [5.12 h]; Roller Compactor [5.12 h]; Cable 13.8 kV 3Cx 500 mm² Al XLPE,/LLDPE / Unarmored [800.02] | 274,644.37 |  | 0.164036550642653 | Cons. | Z2 | MV | Cons | Cbl&Dct | allElec | SUB.C | Art | Art.Rd |
| B2.33 71 19 17_R |  | Backfilling(Rem) | 5d | 2026-10-29 | 2026-11-04 | B2.33 71 49.23.010_R SS, B2.33 71 19 17 |  |  |  |  | 40.18d | 7.86d | Labor [62.37 h]; Foreman [31.18 h]; Operator [62.37 h]; Surveyor [31.18 h]; Surveyor Helper [31.18 h]; Loader [32 h]; Water Tanker [32 h]; Dump Truck [32 h]; Plate Compactor [32 h]; Cable 13.8 kV 3Cx 500 mm² Al XLPE,/LLDPE / Unarmored [2000.04] | 686,610.93 |  | 0.164036550642653 | Cons. | Z2 | MV | Cons | Cbl&Dct | allElec | SUB.C | Art | Art.Rd |
| B2.33 71 49.23.010_R |  | Cable Pulling(Rem) | 2.6d | 2026-10-29 | 2026-11-01 | B2.33 71 19 16_R SS, B2.33 71 49.23.010 |  |  |  |  | 40.18d | 0d | Labor [24.95 h]; Foreman [12.47 h]; Surveyor [12.47 h]; Surveyor Helper [12.47 h]; Electrician [12.47 h]; Cable 13.8 kV 3Cx 500 mm² Al XLPE,/LLDPE / Unarmored [272.72] | 93,623.34 |  | 0.0447354604976501 | Cons. | Z2 | MV | Cons | Cbl&Dct | allElec | SUB.C | Art | Art.Rd |
|  | MV Replacing | **Cable Replacement** |  | 2026-11-02 | 2026-11-22 |  |  |  |  |  |  |  |  |  |  |  |  |  |  |  |  |  |  |  |  |
| B2.33 71 49.23.061 |  | Excavation | 3d | 2026-11-02 | 2026-11-05 | B2.33 71 19 16_R |  |  |  |  | 31.18d | 0d | Labor [31.18 h]; Foreman [15.59 h]; Operator [31.18 h]; Surveyor [15.59 h]; Surveyor Helper [15.59 h]; Excavator (With Bucket) [16 h]; Water Tanker [16 h]; Dump Truck [16 h]; Plate Compactor [16 h]; REPLACING - Dismantling and relocating the existing MV power cables [180] | 63,374.2 |  | 0.0318613569691026 | Cons. | Z2 | MV | Cons |  |  | SUB.C | Art | Art.Rd |
| B2.33 71 49.23.062 |  | Old Cable Grubbing | 4d | 2026-11-05 | 2026-11-10 | B2.33 71 49.23.061 |  |  |  |  | 31.18d | 0d | Labor [46.78 h]; Operator [46.78 h]; JCB [24 h]; REPLACING - Dismantling and relocating the existing MV power cables [360] | 126,748.4 |  | 0.0637227139382048 | Cons. | Z2 | MV | Cons |  |  | SUB.C | Art | Art.Rd |
| B2.33 71 49.23.063 |  | New Cable Installation | 4d | 2026-11-10 | 2026-11-15 | B2.33 71 49.23.062 |  |  |  |  | 31.18d | 0d | Foreman [23.39 h]; Operator [46.78 h]; Boom Truck [24 h]; Electrician [23.39 h]; REPLACING - Dismantling and relocating the existing MV power cables [180] | 63,374.2 |  | 0.0318613569691026 | Cons. | Z2 | MV | Cons |  |  | SUB.C | Art | Art.Rd |
| B2.33 71 49.23.064 |  | Backfilling & Warrning Tape | 6d | 2026-11-15 | 2026-11-22 | B2.33 71 49.23.063, B3.33 05 63.02.17 |  |  |  |  | 31.18d | 26.18d | Labor [77.96 h]; Foreman [38.98 h]; Operator [155.92 h]; Surveyor [38.98 h]; Surveyor Helper [38.98 h]; Loader [40 h]; Water Tanker [40 h]; Dump Truck [40 h]; Plate Compactor [40 h]; Roller Compactor [40 h]; REPLACING - Dismantling and relocating the existing MV power cables [180] | 63,374.2 |  | 0.0318613569691026 | Cons. | Z2 | MV | Cons |  |  | SUB.C | Art | Art.Rd |
|  | Street Lighting | **Street Lighting** |  | 2026-08-26 | 2026-11-09 |  |  |  |  |  |  |  |  |  |  |  |  |  |  |  |  |  |  |  |  |
|  | Cables | **Cables** |  | 2026-09-10 | 2026-11-04 |  |  |  |  |  |  |  |  |  |  |  |  |  |  |  |  |  |  |  |  |
|  | 4C,10+1C,10mm2 | **4C,10+1C,10mm2** |  | 2026-09-10 | 2026-11-04 |  |  |  |  |  |  |  |  |  |  |  |  |  |  |  |  |  |  |  |  |
| B2.33 71 19 18 |  | Land Adjustment (50.00% Completed) | 5d | 2026-09-10 A | 2026-09-15 A | B2.33 71 19 16 SS | 100% |  |  |  |  |  | Labor [23.39 h]; Foreman [11.69 h]; Operator [15.59 h]; Surveyor [3.9 h]; Surveyor Helper [3.9 h]; Excavator (With Bucket) [12 h]; Water Tanker [12 h]; Dump Truck [12 h]; Roller Compactor [12 h]; SL Cable, Copper 4x10mm2/ CU/XLPE/SWA/PVC + 1x10mm2 CU/PVC [208.25] | 12,981.98 | 12,981.98 | 0.00496258855349975 | Cons. | Z2 | SL | Cons | Cables | allElec | SUB.C | Art | Art.Rd |
| B2.33 71 49.23.64 |  | Cable Pulling (50.00% Completed) | 3d | 2026-09-13 A | 2026-09-15 A | B2.33 71 19 18 SS | 100% |  |  |  |  |  | Labor [38.98 h]; Foreman [19.49 h]; Surveyor [19.49 h]; Surveyor Helper [19.49 h]; Electrician [19.49 h]; SL Cable, Copper 4x10mm2/ CU/XLPE/SWA/PVC + 1x10mm2 CU/PVC [624.75] | 38,945.48 | 38,945.48 | 0.0148875878281853 | Cons. | Z2 | SL | Cons | Cables | allElec | SUB.C | Art | Art.Rd |
| B2.33 71 19 18_R |  | Land Adjustment(Rem) | 1.5d | 2026-10-29 | 2026-10-31 | B2.33 71 19 16_R SS, B2.33 71 19 18 |  |  |  |  | 51.68d | 0d | Labor [23.39 h]; Foreman [11.69 h]; Operator [15.59 h]; Surveyor [3.9 h]; Surveyor Helper [3.9 h]; Excavator (With Bucket) [12 h]; Water Tanker [12 h]; Dump Truck [12 h]; Roller Compactor [12 h]; SL Cable, Copper 4x10mm2/ CU/XLPE/SWA/PVC + 1x10mm2 CU/PVC [208.25] | 12,981.98 |  | 0.00496258855349975 | Cons. | Z2 | SL | Cons | Cables | allElec | SUB.C | Art | Art.Rd |
| B2.33 71 49.23.64_R |  | Cable Pulling(Rem) | 2.5d | 2026-10-29 | 2026-11-01 | B2.33 71 19 18_R SS, B2.33 71 49.23.64 |  |  |  |  | 51.68d | 0d | Labor [38.98 h]; Foreman [19.49 h]; Surveyor [19.49 h]; Surveyor Helper [19.49 h]; Electrician [19.49 h]; SL Cable, Copper 4x10mm2/ CU/XLPE/SWA/PVC + 1x10mm2 CU/PVC [624.75] | 38,945.48 |  | 0.0148875878281853 | Cons. | Z2 | SL | Cons | Cables | allElec | SUB.C | Art | Art.Rd |
| B2.33 71 19 19 |  | Backfilling | 3d | 2026-11-01 | 2026-11-04 | B2.33 71 49.23.64_R |  |  |  |  | 51.68d | 0d | Labor [93.55 h]; Foreman [46.78 h]; Operator [93.55 h]; Surveyor [46.78 h]; Surveyor Helper [46.78 h]; Loader [48 h]; Water Tanker [48 h]; Dump Truck [48 h]; Plate Compactor [48 h]; SL Cable, Copper 4x10mm2/ CU/XLPE/SWA/PVC + 1x10mm2 CU/PVC [416.5] | 25,963.96 |  | 0.00496258855349975 | Cons. | Z2 | SL | Cons | Cables | allElec | SUB.C | Art | Art.Rd |
|  | SL Poles | **SL Poles** |  | 2026-08-26 | 2026-10-24 |  |  |  |  |  |  |  |  |  |  |  |  |  |  |  |  |  |  |  |  |
|  | Pole (12 M Sngl Arm) | **Pole (12 M Single Arm)** |  | 2026-08-26 | 2026-10-24 |  |  |  |  |  |  |  |  |  |  |  |  |  |  |  |  |  |  |  |  |
| B2.33 71 16.031 |  | Excavation | 12d | 2026-08-26 A | 2026-09-08 A | B6. 33 42 13.011 | 100% |  |  |  |  |  | Labor [42.52 h]; Foreman [21.26 h]; Operator [42.52 h]; Surveyor [21.26 h]; Surveyor Helper [21.26 h]; Excavator (With Bucket) [24 h]; Dump Truck [24 h]; Lighting poles with 1 arm, height of ( 12 ) meters [5.4] | 56,012.68 | 56,012.68 | 0.0107113644558805 | Cons. | Z2 | SL | Cons | Pls&Lmn | allElec | SUB.C | Art | Art.Rd |
| B2.33 71 16.032 |  | PC & RC Foundation | 11d | 2026-08-29 A | 2026-09-09 A | B2.33 71 16.031 SS | 100% |  |  |  |  |  | Labor [70.87 h]; Foreman [35.44 h]; Laboratory Officer [35.44 h]; Carpenter [35.44 h]; Steelfixer [35.44 h]; Mason [35.44 h]; Lighting poles with 1 arm, height of ( 12 ) meters [5.4] | 56,012.68 | 56,012.68 | 0.0107113644558805 | Cons. | Z2 | SL | Cons | Pls&Lmn | allElec | SUB.C | Art | Art.Rd |
| B2.33 71 16.033 |  | Lighting Poles Installation Incl power box, Cables (84.00% Completed) | 7.3d | 2026-09-07 A | 2026-09-15 A | B2.33 71 16.032 SS, DMM2-Proc-Delv-6538 SS | 100% |  |  |  |  |  | Labor [78.59 h]; Operator [78.59 h]; Mobile Crane [40.32 h]; Electrician [39.29 h]; Lighting poles with 1 arm, height of ( 12 ) meters [9.07] | 94,101.3 | 94,101.3 | 0.0214227289117611 | Cons. | Z2 | SL | Cons | Pls&Lmn | allElec | SUB.C | Art | Art.Rd |
| B2.33 71 16.034 |  | Lighting Luminares Inst (84.00% Completed) | 2.3d | 2026-09-13 A | 2026-09-15 A | B2.33 71 16.033 SS | 100% |  |  |  |  |  | Labor [52.39 h]; Operator [52.39 h]; Manlift [26.88 h]; Street Lighting( LED), Lamp Lumen: 24286, Luminare Lumen:20914, complete with control gear and lamp, (140) WATT. [18.48] | 19,697.68 | 19,697.68 | 0.00549811017242346 | Cons. | Z2 | SL | Cons | Pls&Lmn | allElec | SUB.C | Art | Art.Rd |
| B2.33 71 16.033_R |  | Lighting Poles Installation Incl power box, Cables(Rem) | 2d | 2026-10-14 A | 2026-10-21 | B2.33 71 16.032 SS, DMM2-Proc-Delv-6538_R SS, B2.33 71 16.033 | 88% | 1d | 2026-10-14 | 2026-10-15 | 24.32d | 0d | Labor [14.97 h]; Operator [14.97 h]; Mobile Crane [7.68 h]; Electrician [7.48 h]; Lighting poles with 1 arm, height of ( 12 ) meters [1.73] | 17,924.06 | 12,956.53 | 0.0214227289117611 | Cons. | Z2 | SL | Cons | Pls&Lmn | allElec | SUB.C | Art | Art.Rd |
| B2.33 71 16.034_R |  | Lighting Luminares Inst(Rem) | 2d | 2026-10-14 A | 2026-10-21 | B2.33 71 16.033_R SS, B2.33 71 16.034 | 88% | 1d | 2026-10-14 | 2026-10-15 | 112.32d |  | Labor [9.98 h]; Operator [9.98 h]; Manlift [5.12 h]; Street Lighting( LED), Lamp Lumen: 24286, Luminare Lumen:20914, complete with control gear and lamp, (140) WATT. [3.52] | 3,751.94 | 2,712.12 | 0.00549811017242346 | Cons. | Z2 | SL | Cons | Pls&Lmn | allElec | SUB.C | Art | Art.Rd |
| B2.33 71 16.035 |  | Backfilling, Grouting & Chamfering | 6d | 2026-10-17 A | 2026-10-24 | B2.33 71 16.034_R | 88% | 3d | 2026-10-17 | 2026-10-22 | 67.32d | 15.64d | Labor [93.55 h]; Foreman [46.78 h]; Mason [46.78 h]; Operator [93.55 h]; Surveyor [46.78 h]; Surveyor Helper [46.78 h]; Loader [48 h]; Water Tanker [48 h]; Dump Truck [48 h]; Plate Compactor [48 h]; Lighting poles with 1 arm, height of ( 12 ) meters [5.4] | 56,012.68 | 19,204.35 | 0.0107113644558805 | Cons. | Z2 | SL | Cons | Pls&Lmn | allElec | SUB.C | Art | Art.Rd |

| ID | WBS | Activity | Duration | Start | Finish | Predecessors | Complete | Remaining | Planned start | Planned finish | Total float | Free float | Resources | Cost | Actual cost | Weight % | DMM2 Weekly Progress | DMM2 Zones | Networks & Stations | DMM2 Phases | Networks Components | All Electrical Scope | Subcontractors works | Dmm2 Roads | Yellow Sheet |
| --- | --- | --- | --- | --- | --- | --- | --- | --- | --- | --- | --- | --- | --- | --- | --- | --- | --- | --- | --- | --- | --- | --- | --- | --- | --- |
|  | Earthing | **Earthing** |  | 2026-10-22 | 2026-11-09 |  |  |  |  |  |  |  |  |  |  |  |  |  |  |  |  |  |  |  |  |
| B2.33 71 19 20 |  | Land Adjustment | 3d | 2026-10-22 | 2026-10-25 | B2.33 71 16.033_R |  |  |  |  | 24.32d | 0d | Labor [46.78 h]; Foreman [23.39 h]; Operator [31.18 h]; Surveyor [7.8 h]; Surveyor Helper [7.8 h]; Excavator (With Bucket) [24 h]; Water Tanker [24 h]; Dump Truck [24 h]; Roller Compactor [24 h]; SL Earthing Including lighting poles circuits [0.45] | 904.39 |  | 0.000454679838542865 | Cons. | Z2 | SL | Cons | Cables | allElec | SUB.C | Art | Art.Rd |
| B2.33 71 19 21 |  | Earth Rods & Conduits | 3d | 2026-10-26 | 2026-10-28 | B2.33 71 19 20 |  |  |  |  | 24.32d | 6.32d | Labor [46.78 h]; Foreman [23.39 h]; Electrician [23.39 h]; SL Earthing Including lighting poles circuits [1.33] | 2,672.96 |  | 0.00134383152280447 | Cons. | Z2 | SL | Cons | Cables | allElec | SUB.C | Art | Art.Rd |
| B2.33 71 19 22 |  | Backfilling | 3d | 2026-11-05 | 2026-11-09 | B2.33 71 19 21, B2.33 71 16.146 |  |  |  |  | 18d | 0d | Labor [93.55 h]; Foreman [46.78 h]; Operator [93.55 h]; Surveyor [46.78 h]; Surveyor Helper [46.78 h]; Loader [48 h]; Water Tanker [48 h]; Dump Truck [48 h]; Plate Compactor [48 h]; SL Earthing Including lighting poles circuits [0.45] | 904.39 |  | 0.000454679838542865 | Cons. | Z2 | SL | Cons | Cables | allElec | SUB.C | Art | Art.Rd |
|  | SL Pillars | **SL Pillars** |  | 2026-11-01 | 2026-11-05 |  |  |  |  |  |  |  |  |  |  |  |  |  |  |  |  |  |  |  |  |
| B2.33 71 26 03 |  | Pillars Installation (Internal Wiring) | 2d | 2026-11-01 | 2026-11-03 | B2.33 71 16.033_R, B2.33 71 49.23.64_R, DMM2-Proc-Delv-6518_R |  |  |  |  | 97.68d | 0d | Labor [109.15 h]; Foreman [54.57 h]; Operator [109.15 h]; Boom Truck [56 h]; Electrician [54.57 h]; Street Lighting Feeder pillars, work shall include earthing for the lighting pillars. [1] | 16,342.35 |  | 0.00307259119104481 | Cons. | Z2 | SL | Cons |  |  | SUB.C | Art | Art.Rd |
| B2.33 71 26 041 |  | KWH meter mounting a frame installation | 2d | 2026-11-03 | 2026-11-05 | B2.33 71 26 03 |  |  |  |  | 97.68d | 6.36d | Labor [109.15 h]; Foreman [54.57 h]; Operator [109.15 h]; Boom Truck [56 h]; Supply and installation of KWH meter mounting a frame only [6] | 52,153.33 |  | 0.00874002310873136 | Cons. | Z2 | SL | Cons |  |  | SUB.C | Art | Art.Rd |
|  | Earth & Road Works | **Earth & Road Works** |  | 2026-03-24 | 2026-11-15 |  |  |  |  |  |  |  |  |  |  |  |  |  |  |  |  |  |  |  |  |
|  | Earth Works | **Earth Works** |  | 2026-03-24 | 2026-04-06 |  |  |  |  |  |  |  |  |  |  |  |  |  |  |  |  |  |  |  |  |
| B1.2.31 23 16.01.8 |  | Roadway Excavation | 2d | 2026-03-24 A | 2026-03-26 A | DMM2-Eng-MS-78, B1.2.31 23 16.01.12 | 100% |  |  |  |  |  | Roadway Excavation for cuttings (all types of soil) [37753.7]; Labor [28.35 h]; Foreman [14.17 h]; Operator [28.35 h]; Surveyor [14.17 h]; Surveyor Helper [14.17 h]; Excavator (With Bucket) [16 h]; Water Tanker [16 h]; Dump Truck [16 h] | 563,512.01 | 563,512.01 | 6.88122324454608E-005 | Cons. | Z2 | Roads | Cons |  |  |  | Art |  |
| B1.2.31 23 23.01.8 |  | Embankment Backfiling | 5.5d | 2026-03-30 A | 2026-04-06 A | B1.2.31 23 16.01.8 | 100% |  |  |  |  |  | Embankment backfiling [114968]; Labor [141.75 h]; Foreman [70.87 h]; Operator [141.75 h]; Surveyor [70.87 h]; Surveyor Helper [70.87 h]; Loader [80 h]; Water Tanker [80 h]; Dump Truck [80 h]; Plate Compactor [80 h]; Roller Compactor [80 h] | 3,129,186.24 | 3,129,186.24 | 0.415307864545898 | Cons. | Z2 | Roads | Cons |  |  |  | Art |  |
|  | Earth Layers | **Earth Layers** |  | 2026-04-08 | 2026-10-27 |  |  |  |  |  |  |  |  |  |  |  |  |  |  |  |  |  |  |  |  |
| B1.2.32 11 13.01.8 |  | Subgrade (80.00% Completed) | 134d | 2026-04-08 A | 2026-09-15 A | B1.2.31 23 23.01.8 | 100% |  |  |  |  |  | Subgrade [13957.7]; Labor [74.84 h]; Foreman [37.42 h]; Operator [74.84 h]; Surveyor [37.42 h]; Surveyor Helper [37.42 h]; Grader [38.4 h]; Loader [38.4 h]; Water Tanker [38.4 h]; Dump Truck [38.4 h]; Plate Compactor [38.4 h]; Roller Compactor [38.4 h] | 416,666.41 | 416,666.41 | 0.3054176532655 | Cons. | Z2 | Roads | Cons | Roads |  |  | Art | Art.Rd |
| B1.2.32 11 23.01.8 |  | Aggregate Base Course (60.58% Completed) | 109.52d | 2026-05-06 A | 2026-09-15 A | B1.2.32 11 13.01.8 SS | 100% |  |  |  |  |  | Aggregate base course [7045.97]; Labor [47.23 h]; Foreman [23.61 h]; Operator [47.23 h]; Surveyor [23.61 h]; Surveyor Helper [23.61 h]; Grader [24.23 h]; Loader [24.23 h]; Water Tanker [24.23 h]; Dump Truck [24.23 h]; Plate Compactor [24.23 h]; Roller Compactor [24.23 h] | 612,450.18 | 612,450.18 | 0.57564108300228 | Cons. | Z2 | Roads | Cons | Roads |  |  | Art | Art.Rd |
| B1.2.32 11 13.01.8_R |  | Subgrade(Rem) | 6d | 2026-09-30 A | 2026-10-27 | B1.2.31 23 23.01.8, B1.2.32 11 13.01.8 | 10% | 5.4d | 2026-09-16 | 2026-09-22 | 107.92d |  | Subgrade [3489.43]; Labor [18.71 h]; Foreman [9.36 h]; Operator [18.71 h]; Surveyor [9.36 h]; Surveyor Helper [9.36 h]; Grader [9.6 h]; Loader [9.6 h]; Water Tanker [9.6 h]; Dump Truck [9.6 h]; Plate Compactor [9.6 h]; Roller Compactor [9.6 h] | 104,166.6 | 48,491.35 | 0.3054176532655 | Cons. | Z2 | Roads | Cons | Roads |  |  | Art | Art.Rd |
| B1.2.32 11 23.01.8_R |  | Aggregate Base Course(Rem) | 1.95d | 2026-10-21 | 2026-10-22 | B1.2.32 11 13.01.8_R SS, B1.2.32 11 23.01.8 |  |  |  |  | 111.37d |  | Aggregate base course [4585.48]; Labor [30.73 h]; Foreman [15.37 h]; Operator [30.73 h]; Surveyor [15.37 h]; Surveyor Helper [15.37 h]; Grader [15.77 h]; Loader [15.77 h]; Water Tanker [15.77 h]; Dump Truck [15.77 h]; Plate Compactor [15.77 h]; Roller Compactor [15.77 h] | 398,578.69 |  | 0.57564108300228 | Cons. | Z2 | Roads | Cons | Roads |  |  | Art | Art.Rd |
|  | Interlock | **Interlock** |  | 2026-11-09 | 2026-11-12 |  |  |  |  |  |  |  |  |  |  |  |  |  |  |  |  |  |  |  |  |
| B1.2.32 14 13.13.8 |  | 60mm thick - Interlocking Block Pavers | 3d | 2026-11-09 | 2026-11-12 | B2.33 71 19 22 |  |  |  |  | 18d | 0d | 60mm thick - Interlocking block pavers for sidewalks and medians [4152.44]; Labor [93.55 h]; Foreman [46.78 h]; Mason [46.78 h]; Operator [93.55 h]; JCB [48 h] | 277,084.34 |  | 0.153829911771722 | Cons. | Z2 | Roads | Cons | Roads |  |  | Art |  |
|  | Curbstone | **Curbstone** |  | 2026-09-10 | 2026-10-22 |  |  |  |  |  |  |  |  |  |  |  |  |  |  |  |  |  |  |  |  |
|  | Pre Install | **Pre-Installation** |  | 2026-09-10 | 2026-10-22 |  |  |  |  |  |  |  |  |  |  |  |  |  |  |  |  |  |  |  |  |
| 32 16 13.031 |  | Excavation (10.00% Completed) | 4.3d | 2026-09-10 A | 2026-09-15 A | B1.2.32 11 23.01.3 SS | 100% |  |  |  |  |  | Curb Stone, Type K1 [5.23]; Labor [3.12 h]; Foreman [1.56 h]; Operator [3.12 h]; Surveyor [1.56 h]; Surveyor Helper [1.56 h]; JCB [1.6 h]; Water Tanker [1.6 h]; Dump Truck [1.6 h]; Plate Compactor [1.6 h] | 394.6 | 394.6 | 0.00232743284063047 | Cons. | Z2 | Roads | Cons | Roads |  |  | Art |  |
| 32 16 13.032 |  | PCC (10.00% Completed) | 3.3d | 2026-09-12 A | 2026-09-15 A | 32 16 13.031 SS | 100% |  |  |  |  |  | Curb Stone, Type K1 [5.23]; Labor [3.12 h]; Mason [1.56 h]; Surveyor [1.56 h]; Surveyor Helper [1.56 h] | 394.8 | 394.8 | 0.00232857169212646 | Cons. | Z2 | Roads | Cons | Roads |  |  | Art |  |
| 32 16 13.033 |  | Haunching (10.00% Completed) | 2.3d | 2026-09-13 A | 2026-09-15 A | 32 16 13.032 SS | 100% |  |  |  |  |  | Curb Stone, Type K1 [5.23]; Labor [3.12 h]; Carpenter [1.56 h]; Mason [1.56 h]; Surveyor [1.56 h]; Surveyor Helper [1.56 h] | 394.6 | 394.6 | 0.00232743284063047 | Cons. | Z2 | Roads | Cons | Roads |  |  | Art |  |
| 32 16 13.031_R |  | Excavation(Rem) | 2d | 2026-10-21 | 2026-10-22 | B1.2.32 11 23.01.3_R SS, 32 16 13.031 |  |  |  |  | 51.52d | 0d | Curb Stone, Type K1 [47.03]; Labor [28.07 h]; Foreman [14.03 h]; Operator [28.07 h]; Surveyor [14.03 h]; Surveyor Helper [14.03 h]; JCB [14.4 h]; Water Tanker [14.4 h]; Dump Truck [14.4 h]; Plate Compactor [14.4 h] | 3,551.44 |  | 0.00232743284063047 | Cons. | Z2 | Roads | Cons | Roads |  |  | Art |  |
| 32 16 13.032_R |  | PCC(Rem) | 2d | 2026-10-21 | 2026-10-22 | 32 16 13.031_R SS, 32 16 13.032 |  |  |  |  | 51.52d | 0d | Curb Stone, Type K1 [47.06]; Labor [28.07 h]; Mason [14.03 h]; Surveyor [14.03 h]; Surveyor Helper [14.03 h] | 3,553.18 |  | 0.00232857169212646 | Cons. | Z2 | Roads | Cons | Roads |  |  | Art |  |
| 32 16 13.033_R |  | Haunching(Rem) | 1.8d | 2026-10-21 | 2026-10-22 | 32 16 13.032_R SS, 32 16 13.033 |  |  |  |  | 51.52d | 0d | Curb Stone, Type K1 [47.03]; Labor [28.07 h]; Carpenter [14.03 h]; Mason [14.03 h]; Surveyor [14.03 h]; Surveyor Helper [14.03 h] | 3,551.44 |  | 0.00232743284063047 | Cons. | Z2 | Roads | Cons | Roads |  |  | Art |  |

| ID | WBS | Activity | Duration | Start | Finish | Predecessors | Complete | Remaining | Planned start | Planned finish | Total float | Free float | Resources | Cost | Actual cost | Weight % | DMM2 Weekly Progress | DMM2 Zones | Networks & Stations | DMM2 Phases | Networks Components | Dmm2 Roads | Yellow Sheet | Subcontractors works |
| --- | --- | --- | --- | --- | --- | --- | --- | --- | --- | --- | --- | --- | --- | --- | --- | --- | --- | --- | --- | --- | --- | --- | --- | --- |
|  | Installation | **Installation** |  | 2026-09-13 | 2026-10-22 |  |  |  |  |  |  |  |  |  |  |  |  |  |  |  |  |  |  |  |
| B1.2.32 16.13.01.8 |  | Curb Stone, Type K1 (10.00% Completed) | 2.3d | 2026-09-13 A | 2026-09-15 A | 32 16 13.033 SS | 100% |  |  |  |  |  | Curb Stone, Type K1 [15.68]; Labor [3.12 h]; Foreman [1.56 h]; Mason [1.56 h]; Operator [3.12 h]; Surveyor [1.56 h]; Surveyor Helper [1.56 h]; JCB [1.6 h] | 1,183.73 | 1,183.73 | 0.00698179883561289 | Cons. | Z2 | Roads | Cons | Roads | Art |  |  |
| B1.2.32 16.13.01.8_R |  | Curb Stone, Type K1(Rem) | 1.8d | 2026-10-21 | 2026-10-22 | 32 16 13.033_R SS, B1.2.32 16.13.01.8 |  |  |  |  | 51.52d | 0d | Curb Stone, Type K1 [141.09]; Labor [28.07 h]; Foreman [14.03 h]; Mason [14.03 h]; Operator [28.07 h]; Surveyor [14.03 h]; Surveyor Helper [14.03 h]; JCB [14.4 h] | 10,653.56 |  | 0.00698179883561289 | Cons. | Z2 | Roads | Cons | Roads | Art |  |  |
|  | Finishing | **Finishing** |  | 2026-09-15 | 2026-10-22 |  |  |  |  |  |  |  |  |  |  |  |  |  |  |  |  |  |  |  |
| 32 16 13.08 |  | Finishing, Fareface (10.00% Completed) | 0.3d | 2026-09-15 A | 2026-09-15 A | B1.2.32 16.13.01.8 SS | 100% |  |  |  |  |  | Curb Stone, Type K1 [3.48]; Labor [3.12 h]; Mason [1.56 h] | 263.05 | 263.05 | 0.00155149535469854 | Cons. | Z2 | Roads | Cons | Roads | Art |  |  |
| 32 16 13.08_R |  | Finishing, Fareface(Rem) | 1.8d | 2026-10-21 | 2026-10-22 | B1.2.32 16.13.01.8_R SS, 32 16 13.08 |  |  |  |  | 51.52d | 4.52d | Curb Stone, Type K1 [31.35]; Labor [28.07 h]; Mason [14.03 h] | 2,367.44 |  | 0.00155149535469854 | Cons. | Z2 | Roads | Cons | Roads | Art |  |  |
|  | Asphalt Layers | **Asphalt Layers** |  | 2026-06-07 | 2026-11-03 |  |  |  |  |  |  |  |  |  |  |  |  |  |  |  |  |  |  |  |
| B1.2.32 11 26.01.8 |  | Bituminous Base Course including Prime Coat (MC1) and tack coat (RC2) (72.00% Completed) | 86.08d | 2026-06-07 A | 2026-09-15 A | B1.2.32 11 23.01.8 SS | 100% |  |  |  |  |  | Bituminous base course(Grading I - Class A) [5738.06]; Labor [89.81 h]; Foreman [44.91 h]; Operator [89.81 h]; Surveyor [44.91 h]; Surveyor Helper [44.91 h]; Dump Truck [46.08 h]; Roller Compactor [46.08 h]; MC1/RC2 Sprayer [46.08 h] | 3,153,798.2 | 3,153,798.2 | 2.41632165486856 | Cons. | Z2 | Roads | Cons | Roads | Art | Art.Rd |  |
| B1.2.32 11 26.01.8_R |  | Bituminous Base Course including Prime Coat (MC1) and tack coat (RC2)(Rem) | 2.24d | 2026-09-26 A | 2026-10-22 | B1.2.32 11 23.01.8_R SS, B1.2.32 11 26.01.8 | 41% | 1.32d | 2026-09-16 | 2026-09-19 | 0d |  | Bituminous base course(Grading I - Class A) [2231.47]; Labor [34.93 h]; Foreman [17.46 h]; Operator [34.93 h]; Surveyor [17.46 h]; Surveyor Helper [17.46 h]; Dump Truck [17.92 h]; Roller Compactor [17.92 h]; MC1/RC2 Sprayer [17.92 h] | 1,226,477.08 | 1,039,422.36 | 2.41632165486856 | Cons. | Z2 | Roads | Cons | Roads | Art | Art.Rd |  |
| B1.2.32 12 16.01.8 |  | Bituminous concrete Wearing Course, including tack coat (RC2) | 5d | 2026-10-28 | 2026-11-03 | B1.2.32 11 26.01.8_R, 10 14 53.08, 32 16 13.08_R |  |  |  |  | 47d | 0d | Bituminous concrete wearing course, after compaction(Grading I - Class A), including tack coat (RC2) [2916.07]; Labor [62.37 h]; Foreman [31.18 h]; Operator [62.37 h]; Surveyor [31.18 h]; Surveyor Helper [31.18 h]; Dump Truck [32 h]; Roller Compactor [32 h]; MC1/RC2 Sprayer [32 h] | 1,720,527.06 |  | 0.948612810138707 | Cons. | Z2 | Roads | Cons | Roads | Art | Art.Rd |  |
|  | Pavement Marking | **Pavement Marking** |  | 2026-11-03 | 2026-11-09 |  |  |  |  |  |  |  |  |  |  |  |  |  |  |  |  |  |  |  |
| B1.2.32 17 23.02.8 |  | Retroreflective Thermoplastic Yellow, Traffic lines | 2d | 2026-11-03 | 2026-11-05 | B1.2.32 12 16.01.8 |  |  |  |  | 93d | 0d | Retroreflective Thermoplastic Yellow, Traffic lines [473.77]; Labor [31.18 h]; Mason [15.59 h]; Road Marking Machine [16 h] | 14,143.05 |  | 0.00711041347870837 | Cons. | Z2 | Roads | Cons | Roads | Art |  |  |
| B1.2.32 17 23.01.8 |  | Retroreflective Thermoplastic White Traffic lines | 3d | 2026-11-05 | 2026-11-09 | B1.2.32 12 16.01.8, B1.2.32 17 23.02.8 |  |  |  |  | 93d | 3d | Retroreflective Thermoplastic White Traffic lines [988.49]; Labor [46.78 h]; Mason [23.39 h]; Road Marking Machine [24 h] | 29,508.46 |  | 0.0148353698370157 | Cons. | Z2 | Roads | Cons | Roads | Art |  |  |
|  | Traffic Signs | **Traffic Signs** |  | 2026-10-22 | 2026-11-15 |  |  |  |  |  |  |  |  |  |  |  |  |  |  |  |  |  |  |  |
|  | Pre Install | **Pre-Installation** |  | 2026-10-22 | 2026-10-28 |  |  |  |  |  |  |  |  |  |  |  |  |  |  |  |  |  |  |  |
| B2.31 23 00.221 |  | Excavation | 2d | 2026-10-22 | 2026-10-25 | B1.2.32 11 26.01.8_R |  |  |  |  | 0d |  | Traffic signs, ground mounted, 1 Sheet Alumenium, (breakaway) Single post [0.47]; Traffic signs, ground mounted, 2 Sheets Alumenium, (breakaway) Single post [0.04]; Labor [31.18 h]; Foreman [15.59 h]; Operator [31.18 h]; Surveyor [15.59 h]; Surveyor Helper [15.59 h]; JCB [16 h]; Water Tanker [16 h]; Dump Truck [16 h]; Plate Compactor [16 h] | 585.99 |  | 0.000294604911829361 | Cons. | Z2 | Roads | Cons | Roads | Art |  |  |
| 10 14 53.08 |  | Foundation | 3d | 2026-10-25 | 2026-10-28 | B2.31 23 00.221 |  |  |  |  | 22d | 0d | Traffic signs, ground mounted, 1 Sheet Alumenium, (breakaway) Single post [0.47]; Traffic signs, ground mounted, 2 Sheets Alumenium, (breakaway) Single post [0.04]; Labor [46.78 h]; Carpenter [23.39 h]; Steelfixer [23.39 h]; Mason [23.39 h]; Surveyor [23.39 h]; Surveyor Helper [23.39 h] | 585.99 |  | 0.000294604911829361 | Cons. | Z2 | Roads | Cons | Roads | Art |  |  |
|  | Installation | **Installation** |  | 2026-11-12 | 2026-11-15 |  |  |  |  |  |  |  |  |  |  |  |  |  |  |  |  |  |  |  |
| B1.2.10 14 53.018 |  | 1 Sheet Alumenium, Single post | 2d | 2026-11-12 | 2026-11-15 | B1.2.32 14 13.13.8, 10 14 53.08, B1.2.32 17 23.02.8, B1.2.32 17 23.01.8 SS |  |  |  |  | 90d | 16.18d | Traffic signs, ground mounted, 1 Sheet Alumenium, (breakaway) Single post [15]; Labor [93.55 h]; Foreman [46.78 h]; Operator [93.55 h]; JCB [48 h] | 16,739.11 |  | 0.00841558285696779 | Cons. | Z2 | Roads | Cons | Roads | Art |  |  |
| B1.2.10 14 53.028 |  | 2 Sheet Alumenium, Single post | 2d | 2026-11-12 | 2026-11-15 | B1.2.32 14 13.13.8, 10 14 53.08, B1.2.32 17 23.02.8, B1.2.32 17 23.01.8 |  |  |  |  | 90d | 16.18d | Traffic signs, ground mounted, 2 Sheets Alumenium, (breakaway) Single post [1.49]; Labor [31.18 h]; Foreman [15.59 h]; Operator [31.18 h]; JCB [16 h] | 2,286.4 |  | 0.00114948756794269 | Cons. | Z2 | Roads | Cons | Roads | Art |  |  |
|  | Guard Rooms | **Guard Rooms** |  | 2026-02-09 | 2026-12-19 |  |  |  |  |  |  |  |  |  |  |  |  |  |  |  |  |  |  |  |
|  | Foundation | **Substructure & Foundation** |  | 2026-02-09 | 2026-09-05 |  |  |  |  |  |  |  |  |  |  |  |  |  |  |  |  |  |  |  |
| B8.31 23 16.011 |  | Excavation | 95.2d | 2026-02-09 A | 2026-06-18 A | B1.1.31 23 23.112 | 100% |  |  |  |  |  | Labor [28.35 h]; Operator [28.35 h]; Surveyor [14.17 h]; Surveyor Helper [14.17 h]; Excavator (With Bucket) [16 h]; Loader [16 h]; Water Tanker [16 h]; Dump Truck [16 h]; Roller Compactor [16 h]; GR Excavation [23.24] | 1,020.24 | 1,020.24 | 0.000617981431930499 | Cons. | Z2 | GRS | Cons | GrdRms |  | Guards | SUB.C |
| B8.31 23 16.0111 |  | Vapor retarders | 2.88d | 2026-06-29 A | 2026-07-01 A | B8.31 23 16.019, DMM2-Proc-PO-0112 | 100% |  |  |  |  |  | Labor [28.35 h]; Foreman [14.17 h]; Mason [14.17 h]; Vapor retarders for guard room type 1 & 2 [92] | 565.8 | 565.8 | 0.000284456471026909 | Cons. | Z2 | GRS | Cons | GrdRms |  | Guards | SUB.C |
| B8.31 23 16.017 |  | 100 mm thickness lean concrete under the foundation | 1d | 2026-07-02 A | 2026-07-04 A | B8.31 23 16.015, DMM2-Proc-PO-0107 | 100% |  | 2026-07-02 | 2026-07-02 |  |  | Labor; Foreman; Carpenter; Mason; 100 mm thickness lean concrete under the foundation for Guard room Type 1 & 2 [3.33] | 1,458.94 | 1,458.94 | 0.000881060933802116 | Cons. | Z2 | GRS | Cons | GrdRms |  | Guards | SUB.C |
| B8.31 23 16.015 |  | Water proofing Paint below slab on grade | 2d | 2026-07-04 A | 2026-07-06 A | B8.31 23 16.013 | 100% |  | 2026-07-04 | 2026-07-05 |  |  | Labor; Foreman; Mason; Water proofing Paint below slab on grade for guard room type 1 & 2 [172] | 3,020.32 | 3,020.32 | 0.00116533641449751 | Cons. | Z2 | GRS | Cons | GrdRms |  | Guards | SUB.C |
| B8.31 23 16.019 |  | Footings | 1d | 2026-07-06 A | 2026-07-06 A | B8.31 23 16.017 | 100% |  |  |  |  |  | Labor [70.87 h]; Foreman [35.44 h]; Carpenter [35.44 h]; Steelfixer [35.44 h]; Mason [35.44 h]; Footings for guard room type 1 & 2 [9.54] | 10,503.64 | 10,503.64 | 0.00553533791384474 | Cons. | Z2 | GRS | Cons | GrdRms |  | Guards | SUB.C |
| B8.31 23 16.013 |  | Aggregate base course | 3d | 2026-09-02 A | 2026-09-05 A | B8.31 23 16.011 | 100% |  |  |  |  |  | Labor [56.7 h]; Operator [56.7 h]; Surveyor [28.35 h]; Surveyor Helper [28.35 h]; Grader [32 h]; Loader [32 h]; Water Tanker [32 h]; Dump Truck [32 h]; Roller Compactor [32 h]; GR Aggregate base course [11.92] | 1,036.09 | 1,036.09 | 0.000830283090794481 | Cons. | Z2 | GRS | Cons | GrdRms |  | Guards | SUB.C |

| ID | WBS | Activity | Duration | Start | Finish | Predecessors | Complete | Planned start | Planned finish | Total float | Free float | Resources | Cost | Actual cost | Weight % | DMM2 Weekly Progress | DMM2 Zones | Networks & Stations | DMM2 Phases | Networks Components | Subcontractors works | Yellow Sheet |
| --- | --- | --- | --- | --- | --- | --- | --- | --- | --- | --- | --- | --- | --- | --- | --- | --- | --- | --- | --- | --- | --- | --- |
|  | Slab on Grade | **Slab on Grade** |  | 2026-07-05 | 2026-08-27 |  |  |  |  |  |  |  |  |  |  |  |  |  |  |  |  |  |
| B8.31 23 16.0113 |  | 50 mm thickness lean concrete under slab on grade | 1d | 2026-07-05 A | 2026-07-05 A | B8.31 23 16.0111, DMM2-Proc-PO-0107 | 100% |  |  |  |  | Labor [28.35 h]; Foreman [14.17 h]; Carpenter [14.17 h]; Mason [14.17 h]; 50 mm thickness lean concrete under slab on grade for Guard room Type 1 & 2 [3.57] | 1,564.09 | 1,564.09 | 0.00110132616725264 | Cons. | Z2 | GRS | Cons | GrdRms | SUB.C | Guards |
| B8.31 23 16.0139 |  | Slab on grade | 6d | 2026-08-22 A | 2026-08-27 A | B8.31 23 16.0113 | 100% |  |  |  |  | Labor [28.35 h]; Steelfixer [14.17 h]; Mason [14.17 h]; Slab on grade for guard room type 1 & 2 [14.56] | 11,479.69 | 11,479.69 | 0.00594583404073319 | Cons. | Z2 | GRS | Cons | GrdRms | SUB.C | Guards |
|  | Utilities | **Underground Utilities** |  | 2026-10-05 | 2026-11-04 |  |  |  |  |  |  |  |  |  |  |  |  |  |  |  |  |  |
| B8.31 23 16.0115 |  | Gravel | 2d | 2026-10-05 A | 2026-10-06 A | B8.31 23 16.0113 | 100% | 2026-10-14 | 2026-10-15 |  |  | Labor [31.18 h]; Gravel [57.77] | 1,014.44 | 1,014.44 | 0.000573839901078318 | Cons. | Z2 | GRS | Cons | GrdRms | SUB.C | Guards |
| B8.31 23 16.0117 |  | uPVC pipes ?160mm | 2d | 2026-10-07 A | 2026-10-10 A | B8.31 23 16.0113, B8.31 23 16.0115, DMM2-Proc-Delv-7353 | 100% | 2026-10-17 | 2026-10-18 |  |  | Labor [31.18 h]; Plumber Helper [15.59 h]; Plumber [15.59 h]; Operator [31.18 h]; JCB [16 h]; uPVC Dia. 160mm. [15] | 1,804.35 | 1,804.35 | 0.000907138624067518 | Cons. | Z2 | GRS | Cons | GrdRms | SUB.C | Guards |
| B8.31 23 16.0119 |  | uPVC pipes ?110mm | 2d | 2026-10-07 A | 2026-10-10 A | B8.31 23 16.0113, B8.31 23 16.0115, B8.31 23 16.0117, DMM2-Proc-Delv-7353 | 100% | 2026-10-19 | 2026-10-20 |  |  | Labor [31.18 h]; Plumber Helper [15.59 h]; Plumber [15.59 h]; Operator [31.18 h]; JCB [16 h]; uPVC Dia. 110mm. [32] | 3,680.65 | 3,680.65 | 0.000289132054590978 | Cons. | Z2 | GRS | Cons | GrdRms | SUB.C | Guards |
| B8.31 23 16.0121 |  | uPVC pipes ?75mm | 2d | 2026-10-07 A | 2026-10-10 A | B8.31 23 16.0113, B8.31 23 16.0115, B8.31 23 16.0119, DMM2-Proc-Delv-7353 | 100% | 2026-10-21 | 2026-10-22 |  |  | Labor [31.18 h]; Plumber Helper [15.59 h]; Plumber [15.59 h]; Operator [31.18 h]; JCB [16 h]; uPVC Dia. 75mm. [5] | 557.55 | 557.55 | 0.000280308775929751 | Cons. | Z2 | GRS | Cons | GrdRms | SUB.C | Guards |
| B8.31 23 16.0123 |  | uPVC pipes ?50mm | 2d | 2026-10-07 A | 2026-10-10 A | B8.31 23 16.0113, B8.31 23 16.0115, B8.31 23 16.0121, DMM2-Proc-Delv-7353 | 100% | 2026-10-24 | 2026-10-25 |  |  | Labor [31.18 h]; Plumber Helper [15.59 h]; Plumber [15.59 h]; Operator [31.18 h]; JCB [16 h]; uPVC Dia. 50mm. [5] | 539.95 | 539.95 | 0.00027146035972248 | Cons. | Z2 | GRS | Cons | GrdRms | SUB.C | Guards |
| B8.31 23 16.0125 |  | PPR pipes ?32mm | 2d | 2026-10-21 | 2026-10-24 | B8.31 23 16.0113, B8.31 23 16.0115, B8.31 23 16.0123, DMM2-Proc-Delv-7354 |  |  |  | 15.96d | 0d | Labor [31.18 h]; Plumber Helper [15.59 h]; Plumber [15.59 h]; Operator [31.18 h]; JCB [16 h]; PPR Dia. 32mm. [10] | 272.2 |  | 0.00013684880066017 | Cons. | Z2 | GRS | Cons | GrdRms | SUB.C | Guards |
| B8.31 23 16.0127 |  | PPR pipes ?25mm | 2d | 2026-10-24 | 2026-10-26 | B8.31 23 16.0113, B8.31 23 16.0115, B8.31 23 16.0125, DMM2-Proc-Delv-7354 |  |  |  | 15.96d | 0d | Labor [31.18 h]; Plumber Helper [15.59 h]; Plumber [15.59 h]; Operator [31.18 h]; JCB [16 h]; PPR Dia. 25mm. [10] | 219.5 |  | 0.000110353827130446 | Cons. | Z2 | GRS | Cons | GrdRms | SUB.C | Guards |
| B8.31 23 16.0129 |  | PPR pipes ?20mm | 2d | 2026-10-24 | 2026-10-26 | B8.31 23 16.0113, B8.31 23 16.0115, B8.31 23 16.0127 SS, DMM2-Proc-Delv-7354 |  |  |  | 15.96d | 0d | Labor [31.18 h]; Plumber Helper [15.59 h]; Plumber [15.59 h]; Operator [31.18 h]; JCB [16 h]; PPR Dia. 20mm. [9] | 165.96 |  | 4.63536349039961E-005 | Cons. | Z2 | GRS | Cons | GrdRms | SUB.C | Guards |
| B8.31 23 16.0131 |  | Scupper ?110mm | 2d | 2026-10-26 | 2026-10-28 | B8.31 23 16.0113, B8.31 23 16.0115, B8.31 23 16.0129, DMM2-Proc-Delv-7356 |  |  |  | 15.96d | 0d | Labor [31.18 h]; Plumber Helper [15.59 h]; Plumber [15.59 h]; Operator [31.18 h]; JCB [16 h]; Scupper Dia. 110mm [8] | 11,126 |  | 0.00209760252958999 | Cons. | Z2 | GRS | Cons | GrdRms | SUB.C | Guards |
| B8.31 23 16.0133 |  | Clean out ?110mm | 2d | 2026-10-28 | 2026-10-31 | B8.31 23 16.0113, B8.31 23 16.0115, B8.31 23 16.0131, DMM2-Proc-Delv-7357 |  |  |  | 15.96d | 0d | Labor [31.18 h]; Plumber Helper [15.59 h]; Plumber [15.59 h]; Operator [31.18 h]; JCB [16 h]; Clean out Dia. 110mm [1] | 254.62 |  | 0.000128010439471317 | Cons. | Z2 | GRS | Cons | GrdRms | SUB.C | Guards |
| B8.31 23 16.0135 |  | Floor drain | 2d | 2026-10-31 | 2026-11-02 | B8.31 23 16.0113, B8.31 23 16.0115, B8.31 23 16.0133, DMM2-Proc-Delv-7358, DMM2-Proc-Delv-4018 |  |  |  | 15.96d | 0d | Labor [31.18 h]; Plumber Helper [15.59 h]; Plumber [15.59 h]; Operator [31.18 h]; JCB [16 h]; Floor drain [1] | 510.12 |  | 0.000256463299752997 | Cons. | Z2 | GRS | Cons | GrdRms | SUB.C | Guards |
| B8.31 23 16.0137 |  | Manhole, dimensions 600mmX600mm | 2d | 2026-11-02 | 2026-11-04 | B8.31 23 16.0113, B8.31 23 16.0115, B8.31 23 16.0135, DMM2-Proc-Delv-7360 |  |  |  | 15.96d | 0d | Labor [31.18 h]; Plumber Helper [15.59 h]; Plumber [15.59 h]; Operator [31.18 h]; JCB [16 h]; Manhole, dimensions 600mmX600mm [2] | 7,533.24 |  | 0.00189367167355845 | Cons. | Z2 | GRS | Cons | GrdRms | SUB.C | Guards |
|  | Walls & Columns | **Superstructure - Walls & Columns** |  | 2026-09-09 | 2026-11-09 |  |  |  |  |  |  |  |  |  |  |  |  |  |  |  |  |  |
| B8.31 23 16.0141 |  | Reinforced Concrete columns | 3d | 2026-09-09 A | 2026-09-12 A | B8.31 23 16.0139, B8.31 23 16.019, DMM2-Eng-PQ-1248 | 100% |  |  |  |  | Labor [70.87 h]; Foreman [35.44 h]; Carpenter [35.44 h]; Steelfixer [35.44 h]; Mason [35.44 h]; Reinforced Concrete columns for guard room type 1 & 2 [7.66] | 11,097.04 | 11,097.04 | 0.00582668207248755 | Cons. | Z2 | GRS | Cons | GrdRms | SUB.C | Guards |
| B8.31 23 16.0143 |  | Concrete masonry unit, 200mm thick wall | 2d | 2026-11-04 | 2026-11-07 | B8.31 23 16.0139, B8.31 23 16.0141, DMM2-Proc-PO-0116, DMM2-Proc-Delv-7344, B8.31 23 16.0117, B8.31 23 16.0119, B8.31 23 16.0121, B8.31 23 16.0123, B8.31 23 16.0125, B8.31 23 16.0127, B8.31 23 16.0129, B8.31 23 16.0131, B8.31 23 16.0133, B8.31 23 16.0135, B8.31 23 16.0137, B8.31 23 16.0115 |  |  |  | 15.96d | 0d | Labor [46.78 h]; Foreman [23.39 h]; Mason [23.39 h]; Concrete masonry unit, 200mm thick wall; for guard room type 1 & 2 [139.07] | 15,628.69 |  | 0.0129948041520342 | Cons. | Z2 | GRS | Cons | GrdRms | SUB.C | Guards |
| B8.31 23 16.0145 |  | Concrete masonry unit, 150mm thick wall | 2d | 2026-11-07 | 2026-11-09 | B8.31 23 16.0139, B8.31 23 16.0143, DMM2-Proc-PO-0116, DMM2-Proc-Delv-7344 |  |  |  | 15.96d | 0d | Labor [46.78 h]; Foreman [23.39 h]; Mason [23.39 h]; Concrete masonry unit, 150mm thick wall; for guard room type 1 & 2 [63.84] | 5,548.97 |  | 0.0038018225736379 | Cons. | Z2 | GRS | Cons | GrdRms | SUB.C | Guards |
|  | Roof | **Superstructure - Roof** |  | 2026-10-26 | 2026-12-09 |  |  |  |  |  |  |  |  |  |  |  |  |  |  |  |  |  |
| B8.31 23 16.0147 |  | Roof Slab and beams | 2d | 2026-10-26 | 2026-10-27 | B8.31 23 16.0141, DMM2-Proc-PO-0111 |  |  |  | 41.32d | 0d | Labor [62.37 h]; Foreman [31.18 h]; Carpenter [31.18 h]; Steelfixer [31.18 h]; Mason [31.18 h]; Roof Slab and beams for guard room type 1 & 2 [18.69] | 23,170.74 |  | 0.0124656085327289 | Cons. | Z2 | GRS | Cons | GrdRms | SUB.C | Guards |
| B8.31 23 16.0153 |  | Sloped screed for roof | 2d | 2026-10-28 | 2026-10-29 | B8.31 23 16.0147, DMM2-Proc-PO-0109, DMM2-Proc-PO-0114 |  |  |  | 41.32d | 0d | Labor [31.18 h]; Foreman [15.59 h]; Mason [15.59 h]; Sloped screed for roof for Guard room Type 1 & 2 [57.77] | 1,673.6 |  | 0.000946705121539799 | Cons. | Z2 | GRS | Cons | GrdRms | SUB.C | Guards |
| B8.31 23 16.0187 |  | Water proofing Membrane for roof | 2d | 2026-10-31 | 2026-11-01 | B8.31 23 16.0153, DMM2-Proc-PO-0115, DMM2-Proc-Delv-7343 |  |  |  | 41.32d | 0d | Labor [31.18 h]; Foreman [15.59 h]; Mason [15.59 h]; Water proofing Membrane for roof for guard room type 1 & 2 [59.13] | 4,464.91 |  | 0.00246757693225649 | Cons. | Z2 | GRS | Cons | GrdRms | SUB.C | Guards |
| B8.31 23 16.01111 |  | 50mm Extruded polystyrene insulation for roof | 2d | 2026-11-02 | 2026-11-03 | B8.31 23 16.0187 |  |  |  | 41.32d | 25.36d | Labor [31.18 h]; Foreman [15.59 h]; Mason [15.59 h]; 50mm Extruded polystyrene insulation for roof for guard room type 1 & 2 [60] | 2,423.41 |  | 0.00131989713009985 | Cons. | Z2 | GRS | Cons | GrdRms | SUB.C | Guards |
| B8.31 23 16.01135 |  | Water proofing Membrane with protection board | 1d | 2026-12-03 | 2026-12-05 | B8.31 23 16.01111, B8.31 23 16.01123, DMM2-Proc-PO-0115, DMM2-Proc-Delv-7341 |  |  |  | 15.96d | 0d | Labor [31.18 h]; Foreman [15.59 h]; Mason [15.59 h]; Water proofing Membrane with protection board for guard room type 1 & 2 [89.9] | 7,262.12 |  | 0.00345203864795345 | Cons. | Z2 | GRS | Cons | GrdRms | SUB.C | Guards |
| B8.31 23 16.01145 |  | 50mm foam concrete for roof layers | 2d | 2026-12-05 | 2026-12-07 | B8.31 23 16.01135, DMM2-Proc-PO-0110, DMM2-Proc-PO-0108 |  |  |  | 15.96d | 0d | Labor [31.18 h]; Foreman [15.59 h]; Mason [15.59 h]; 50mm foam concrete for roof layers for guard room type 1 & 2 [57.77] | 1,673.6 |  | 0.000946705121539799 | Cons. | Z2 | GRS | Cons | GrdRms | SUB.C | Guards |
| B8.31 23 16.01149 |  | Stone coping 30mm thickness | 2d | 2026-12-07 | 2026-12-09 | B8.31 23 16.01145, B8.31 23 16.01147, DMM2-Proc-Delv-7339 |  |  |  | 15.96d | 0d | Labor [62.37 h]; Carpenter [31.18 h]; Mason [31.18 h]; Stone coping 30mm thickness for guard room type 1 & 2 [68] | 13,015.23 |  | 0.00943019957289844 | Cons. | Z2 | GRS | Cons | GrdRms | SUB.C | Guards |

| ID | WBS | Activity | Duration | Start | Finish | Predecessors | Total float | Free float | Resources | Cost | Weight % | DMM2 Weekly Progress | DMM2 Zones | Networks & Stations | DMM2 Phases | Networks Components | Subcontractors works | Yellow Sheet |
| --- | --- | --- | --- | --- | --- | --- | --- | --- | --- | --- | --- | --- | --- | --- | --- | --- | --- | --- |
|  | Enclosure | **Enclosure & Weatherproofing** |  | 2026-11-09 | 2026-11-23 |  |  |  |  |  |  |  |  |  |  |  |  |  |
| B8.31 23 16.0149 |  | Aluminum window W01 size (1.3m x 1.4m) | 1d | 2026-11-09 | 2026-11-10 | B8.31 23 16.0143, B8.31 23 16.0145, DMM2-Proc-Delv-7351 | 25.96d | 0d | Labor [46.78 h]; Carpenter [23.39 h]; Aluminum window W01 size (1.3m x 1.4m) for guard room type 1 & 2 [11] | 25,526.12 | 0.0128332451436134 | Cons. | Z2 | GRS | Cons | GrdRms | SUB.C | Guards |
| B8.31 23 16.0155 |  | Aluminum window W02 size (0.6m x 0.9m) | 2d | 2026-11-10 | 2026-11-12 | B8.31 23 16.0149, B8.31 23 16.0143, B8.31 23 16.0145, DMM2-Proc-Delv-7351 | 25.96d | 0d | Labor [46.78 h]; Carpenter [23.39 h]; Aluminum window W02 size (0.6m x 0.9m) For guard room 1 [1] | 1,274.86 | 0.000640937038977313 | Cons. | Z2 | GRS | Cons | GrdRms | SUB.C | Guards |
| B8.31 23 16.0189 |  | External plastering | 4d | 2026-11-12 | 2026-11-17 | B8.31 23 16.0155, B8.31 23 16.0143, B8.31 23 16.0145, B8.31 23 16.0149 | 25.96d | 0d | Labor [62.37 h]; Mason [31.18 h]; External plastering for guard room type 1 & 2 [310.54] | 11,179.44 | 0.0075110987577625 | Cons. | Z2 | GRS | Cons | GrdRms | SUB.C | Guards |
| B8.31 23 16.01113 |  | Water proofing Membrane with 50mm screed protection | 2d | 2026-11-17 | 2026-11-19 | B8.31 23 16.0189, DMM2-Proc-PO-0115 | 25.96d | 0d | Labor [31.18 h]; Foreman [15.59 h]; Mason [15.59 h]; Water proofing Membrane with 50mm screed protection fc' 20MPa for guard room type 1 & 2 [36.66] | 4,699.45 | 0.00244901034074885 | Cons. | Z2 | GRS | Cons | GrdRms | SUB.C | Guards |
| B8.31 23 16.01137 |  | External painting | 3d | 2026-11-19 | 2026-11-23 | B8.31 23 16.01113, DMM2-Proc-PO-0119, DMM2-Proc-Delv-7347 | 25.96d | 0d | Labor [62.37 h]; Painter [31.18 h]; External painting for guard room type 1 & 2 [310.54] | 16,085.97 | 0.0108076365458916 | Cons. | Z2 | GRS | Cons | GrdRms | SUB.C | Guards |
|  | Interior & MEP | **Interior & MEP** |  | 2026-11-09 | 2026-12-19 |  |  |  |  |  |  |  |  |  |  |  |  |  |
| B8.31 23 16.0151 |  | Internal plastering | 2d | 2026-11-09 | 2026-11-11 | B8.31 23 16.0143, B8.31 23 16.0145 | 15.96d | 0d | Labor [62.37 h]; Mason [31.18 h]; Internal plastering for guard room type 1 & 2 [168] | 5,604.49 | 0.00278411393954396 | Cons. | Z2 | GRS | Cons | GrdRms | SUB.C | Guards |
| B8.31 23 16.0157 |  | Cementitious Water proofing for wet areas | 2d | 2026-11-11 | 2026-11-14 | B8.31 23 16.0151 | 15.96d | 0d | Labor [31.18 h]; Foreman [15.59 h]; Mason [15.59 h]; Cementitious Water proofing for wet areas for guard room type 1 & 2 [7.6] | 393.68 | 0.000208339981607548 | Cons. | Z2 | GRS | Cons | GrdRms | SUB.C | Guards |
|  | Mechanical | **Mechanical** |  | 2026-11-11 | 2026-11-16 |  |  |  |  |  |  |  |  |  |  |  |  |  |
| B8.31 23 16.0159 |  | DX wall mounted Split/AC | 2d | 2026-11-11 | 2026-11-14 | B8.31 23 16.0151, DMM2-Proc-Delv-7355 | 27.96d | 0d | Labor [31.18 h]; Electrician [15.59 h]; MEP Specialist [15.59 h]; DX wall mounted Split/AC For guard room type 1&2 [7] | 22,310.04 | 0.00801168784967041 | Cons. | Z2 | GRS | Cons | GrdRms | SUB.C | Guards |
| B8.31 23 16.0191 |  | EF-01 Exhaust axial fan | 2d | 2026-11-14 | 2026-11-16 | B8.31 23 16.0159, DMM2-Proc-Delv-7352 | 27.96d | 0d | Labor [31.18 h]; Electrician [15.59 h]; MEP Specialist [15.59 h]; EF-01 Exhaust axial fan air flow capacity = 50 l/s [1] | 1,158.96 | 0.00058266820724875 | Cons. | Z2 | GRS | Cons | GrdRms | SUB.C | Guards |
|  | Plumb & Elec | **Plumbing & Electrical** |  | 2026-11-11 | 2026-12-19 |  |  |  |  |  |  |  |  |  |  |  |  |  |
| B8.31 23 16.0177 |  | 20A DOUBLE POLE SWITCH | 2d | 2026-11-11 | 2026-11-14 | B8.31 23 16.0151, DMM2-Proc-Delv-7368 | 20.96d | 0d | Labor [31.18 h]; Electrician [15.59 h]; MEP Specialist [15.59 h]; 20A DOUBLE POLE SWITCH, IP56, For guard room 1 [3] | 1,269.6 | 0.000212764189711182 | Cons. | Z2 | GRS | Cons | GrdRms | SUB.C | Guards |
| B8.31 23 16.0179 |  | 13A SPUR OUTLET, For guard room 1&2 | 2d | 2026-11-14 | 2026-11-16 | B8.31 23 16.0151, B8.31 23 16.0177, DMM2-Proc-Delv-7368 | 20.96d | 0d | Labor [31.18 h]; Electrician [15.59 h]; MEP Specialist [15.59 h]; 13A SPUR OUTLET, For guard room 1&2 [6] | 2,539.2 | 0.000851056758844738 | Cons. | Z2 | GRS | Cons | GrdRms | SUB.C | Guards |
| B8.31 23 16.0161 |  | Electrical Water Heater 50L | 2d | 2026-11-16 | 2026-11-18 | B8.31 23 16.0151, B8.31 23 16.0159, B8.31 23 16.0191, DMM2-Proc-Delv-7359 | 27.96d | 0d | Labor [31.18 h]; Electrician [15.59 h]; MEP Specialist [15.59 h]; Electrical Water Heater 50L capacity [1] | 799.86 | 0.000402129346063344 | Cons. | Z2 | GRS | Cons | GrdRms | SUB.C | Guards |
| B8.31 23 16.0181 |  | 13A SINGLE SWITCH SOCKET OUTLET | 2d | 2026-11-16 | 2026-11-18 | B8.31 23 16.0151, B8.31 23 16.0179, DMM2-Proc-Delv-7368, DMM2-Proc-Delv-7365 | 20.96d | 0d | Labor [31.18 h]; Electrician [15.59 h]; MEP Specialist [15.59 h]; 13A SINGLE SWITCH SOCKET OUTLET, For guard room 1&2 [6] | 2,296.86 | 0.000769832320069362 | Cons. | Z2 | GRS | Cons | GrdRms | SUB.C | Guards |
| B8.31 23 16.0163 |  | DB-MGR Panel | 2d | 2026-11-18 | 2026-11-21 | B8.31 23 16.0151, B8.31 23 16.0161, DMM2-Proc-Delv-7365 | 27.96d | 0d | Labor [31.18 h]; Electrician [15.59 h]; MEP Specialist [15.59 h]; DB-MGR Panel: 32/100 Ampere, 3P, IP66,60Hz incomer MCCB . For guard room 1 [1] | 4,716.62 | 0.00230014454625766 | Cons. | Z2 | GRS | Cons | GrdRms | SUB.C | Guards |
| B8.31 23 16.0183 |  | 13A DOUBLE SWITCH SOCKET OUTLET | 2d | 2026-11-18 | 2026-11-21 | B8.31 23 16.0151, B8.31 23 16.0181, DMM2-Proc-Delv-7368 | 20.96d | 0d | Labor [31.18 h]; Electrician [15.59 h]; MEP Specialist [15.59 h]; 13A DOUBLE SWITCH SOCKET OUTLET, For guard room 1&2 [22] | 8,788.78 | 0.003414347411416 | Cons. | Z2 | GRS | Cons | GrdRms | SUB.C | Guards |
| B8.31 23 16.0165 |  | Grounding and lightning system | 2d | 2026-11-21 | 2026-11-23 | B8.31 23 16.0151, B8.31 23 16.0163, DMM2-Proc-Delv-7369 | 27.96d | 0d | Labor [31.18 h]; Electrician [15.59 h]; MEP Specialist [15.59 h]; GR Supply, install and test the following grounding and lightning system [4] | 62,590.88 | 0.0157338112789579 | Cons. | Z2 | GRS | Cons | GrdRms | SUB.C | Guards |
| B8.31 23 16.0167 |  | Fire alarm system | 2d | 2026-11-23 | 2026-11-25 | B8.31 23 16.0151, B8.31 23 16.0165, DMM2-Proc-Delv-7371 | 27.96d | 12d | Labor [31.18 h]; Electrician [15.59 h]; MEP Specialist [15.59 h]; Fire alarm system [1] | 64,569.17 | 0.0324621242095023 | Cons. | Z2 | GRS | Cons | GrdRms | SUB.C | Guards |
| B8.31 23 16.0169 |  | Data/ voice RJ45 outlet include CAT6A cable | 2d | 2026-12-09 | 2026-12-12 | B8.31 23 16.0151, B8.31 23 16.0167, B8.31 23 16.01149, DMM2-Proc-Delv-7374 | 15.96d | 0d | Labor [31.18 h]; Electrician [15.59 h]; MEP Specialist [15.59 h]; Data/ voice RJ45 outlet include CAT6A cable for guard room 1 [14] | 11,357.81 | 0.00571013435401201 | Cons. | Z2 | GRS | Cons | GrdRms | SUB.C | Guards |
| B8.31 23 16.0171 |  | RJ45 connector include CAT6A cable for security cameras | 2d | 2026-12-12 | 2026-12-14 | B8.31 23 16.0151, B8.31 23 16.0169, B8.31 23 16.01105 | 15.96d | 0d | Labor [31.18 h]; Electrician [15.59 h]; MEP Specialist [15.59 h]; RJ45 connector include CAT6A cable for security cameras for guard room 1&2 [12] | 11,747.67 | 0.00590613682802147 | Cons. | Z2 | GRS | Cons | GrdRms | SUB.C | Guards |
| B8.31 23 16.0173 |  | Switch 20A, 1P, 60Hz Isolator/disconnect switches | 2d | 2026-12-14 | 2026-12-16 | B8.31 23 16.0151, B8.31 23 16.0171, B8.31 23 16.01129, DMM2-Proc-Delv-7396, DMM2-Proc-Delv-7370 | 15.96d | 0d | Labor [31.18 h]; Electrician [15.59 h]; MEP Specialist [15.59 h]; Switch 20A, 1P, 60Hz Isolator/disconnect switches IP65 guard room 1&2 [4] | 1,692.8 | 0.000851056758844738 | Cons. | Z2 | GRS | Cons | GrdRms | SUB.C | Guards |
| B8.31 23 16.0175 |  | DB-GR Panel | 2d | 2026-12-16 | 2026-12-19 | B8.31 23 16.0151, B8.31 23 16.0173, DMM2-Proc-Delv-7365 | 15.96d | 0d | Labor [31.18 h]; Electrician [15.59 h]; MEP Specialist [15.59 h]; DB-GR Panel: 32/100 Ampere, 3P, IP66,60Hz incomer MCCB .For guard room 2 [3] | 14,081.36 | 0.00686703615653021 | Cons. | Z2 | GRS | Cons | GrdRms | SUB.C | Guards |
| B8.31 23 16.0193 |  | 4Cx 6mm2 + 1Cx6mm2 Cu/XLPE/PVC FROM KWHM to DB-MGR | 2d | 2026-12-16 | 2026-12-19 | B8.31 23 16.0163, B8.31 23 16.0175 SS, DMM2-Proc-Delv-7366, DMM2-Proc-Delv-4588 | 15.96d | 0d | Labor [31.18 h]; Electrician [15.59 h]; MEP Specialist [15.59 h]; 4Cx 6mm2 + 1Cx6mm2 Cu/XLPE/PVC FROM KWHM to DB-MGR For guard room 1 & 2 [40] | 2,704.25 | 0.0013595591502471 | Cons. | Z2 | GRS | Cons | GrdRms | SUB.C | Guards |

| ID | WBS | Activity | Duration | Start | Finish | Predecessors | Total float | Free float | Resources | Cost | Weight % | DMM2 Weekly Progress | DMM2 Zones | Networks & Stations | DMM2 Phases | Networks Components | Subcontractors works | Yellow Sheet |
| --- | --- | --- | --- | --- | --- | --- | --- | --- | --- | --- | --- | --- | --- | --- | --- | --- | --- | --- |
|  | Interior Finishes | **Interior Finishes** |  | 2026-11-14 | 2026-12-01 |  |  |  |  |  |  |  |  |  |  |  |  |  |
| B8.31 23 16.0195 |  | Porcelain flooring tiles size (600x600) | 3d | 2026-11-14 | 2026-11-17 | B8.31 23 16.0157, DMM2-Proc-Delv-7345 | 15.96d | 0d | Labor [46.78 h]; Mason [23.39 h]; Porcelain flooring tiles size (600x600)mm For guard room 1 [10.33] | 1,133.72 | 0.000606946049217459 | Cons. | Z2 | GRS | Cons | GrdRms | SUB.C | Guards |
| B8.31 23 16.01117 |  | Raised floor finish | 3d | 2026-11-17 | 2026-11-21 | B8.31 23 16.0195, DMM2-Proc-Delv-7348 | 25.96d | 9d | Labor [46.78 h]; Mason [23.39 h]; Raised floor finish for guard room 1 [10.33] | 11,373.43 | 0.00608887170522928 | Cons. | Z2 | GRS | Cons | GrdRms | SUB.C | Guards |
| B8.31 23 16.0197 |  | Ceramic wall tiles size (300x300) mm | 3d | 2026-11-17 | 2026-11-21 | B8.31 23 16.0157, B8.31 23 16.0195 | 15.96d | 0d | Labor [46.78 h]; Mason [23.39 h]; Ceramic wall tiles size (300x300)mm For guard room 1 [17.81] | 1,860.79 | 0.000945493491820515 | Cons. | Z2 | GRS | Cons | GrdRms | SUB.C | Guards |
| B8.31 23 16.01107 |  | Porcelain flooring tiles size (300x300) | 3d | 2026-11-21 | 2026-11-24 | B8.31 23 16.0157, B8.31 23 16.0197, DMM2-Proc-Delv-7345 | 15.96d | 0d | Labor [46.78 h]; Mason [23.39 h]; Porcelain flooring tiles size (300x300)mm for guard room type 1 & 2 [3.35] | 367.66 | 0.000220707654260893 | Cons. | Z2 | GRS | Cons | GrdRms | SUB.C | Guards |
| B8.31 23 16.0185 |  | Internal painting | 3d | 2026-11-21 | 2026-11-24 | B8.31 23 16.0151, B8.31 23 16.0183, DMM2-Proc-PO-0119, DMM2-Proc-Delv-7342 | 20.96d | 0d | Labor [62.37 h]; Painter [31.18 h]; Internal painting for guard room type 1 & 2 [168] | 5,458.33 | 0.00245015661284842 | Cons. | Z2 | GRS | Cons | GrdRms | SUB.C | Guards |
| B8.31 23 16.01109 |  | Porcelain flooring tiles size (500x500) | 3d | 2026-11-24 | 2026-11-28 | B8.31 23 16.0157, B8.31 23 16.01107, DMM2-Proc-Delv-7345 | 15.96d | 0d | Labor [46.78 h]; Mason [23.39 h]; Porcelain flooring tiles size (500x500)mm for guard room type 1 & 2 [39.86] | 4,374.64 | 0.00237260728330459 | Cons. | Z2 | GRS | Cons | GrdRms | SUB.C | Guards |
| B8.31 23 16.0199 |  | Gypsum board ceiling, including paint | 2d | 2026-11-24 | 2026-11-26 | B8.31 23 16.0185, DMM2-Proc-Delv-7346 | 20.96d | 4d | Labor [62.37 h]; Mason [31.18 h]; Gypsum board ceiling, including paint for guard room type 1 & 2 [53.54] | 6,816.18 | 0.00364829752493255 | Cons. | Z2 | GRS | Cons | GrdRms | SUB.C | Guards |
| B8.31 23 16.01115 |  | Porcelain skirting 100mm height | 3d | 2026-11-28 | 2026-12-01 | B8.31 23 16.0195, B8.31 23 16.01107, B8.31 23 16.01109 | 16.96d | 0d | Labor [46.78 h]; Mason [23.39 h]; Porcelain skirting 100mm height for guard room type 1 & 2 [49] | 2,538.21 | 0.00125003988964529 | Cons. | Z2 | GRS | Cons | GrdRms | SUB.C | Guards |
|  | Fixtures, Equipment | **Fixtures, Equipment & Final Connections** |  | 2026-11-23 | 2026-12-13 |  |  |  |  |  |  |  |  |  |  |  |  |  |
|  | Doors | **Install Doors** |  | 2026-12-01 | 2026-12-08 |  |  |  |  |  |  |  |  |  |  |  |  |  |
| B8.31 23 16.01139 |  | Steel Door SD1 | 2d | 2026-12-01 | 2026-12-03 | B8.31 23 16.0185, B8.31 23 16.0195, B8.31 23 16.0197, B8.31 23 16.01115, B8.31 23 16.01117, B8.31 23 16.0199, B8.31 23 16.01107, B8.31 23 16.01109, DMM2-Proc-Delv-7349 | 16.96d | 0d | Labor [31.18 h]; Welder [15.59 h]; Steelfixer [15.59 h]; Operator [31.18 h]; Boom Truck [16 h]; Welding Machine [16 h]; Steel Door SD1 size (1m x 2.2m) for guard room type 1 & 2 [5] | 20,281.85 | 0.0101966936268533 | Cons. | Z2 | GRS | Cons | GrdRms | SUB.C | Guards |
| B8.31 23 16.01141 |  | Wood Door TD1 | 2d | 2026-12-03 | 2026-12-06 | B8.31 23 16.0185, B8.31 23 16.0195, B8.31 23 16.0197, B8.31 23 16.01115, B8.31 23 16.01117, B8.31 23 16.0199, B8.31 23 16.01107, B8.31 23 16.01109, B8.31 23 16.01139, DMM2-Proc-Delv-7350 | 16.96d | 0d | Labor [31.18 h]; Carpenter [15.59 h]; Operator [31.18 h]; Boom Truck [16 h]; Wood Door TD1 size (0.75m x 2.2m) For guard room 1 [1] | 2,491.77 | 0.00125273463458113 | Cons. | Z2 | GRS | Cons | GrdRms | SUB.C | Guards |
| B8.31 23 16.01143 |  | Wood Door TD2 | 2d | 2026-12-06 | 2026-12-08 | B8.31 23 16.0185, B8.31 23 16.0195, B8.31 23 16.0197, B8.31 23 16.01115, B8.31 23 16.01117, B8.31 23 16.0199, B8.31 23 16.01107, B8.31 23 16.01109, B8.31 23 16.01141, DMM2-Proc-Delv-7350 | 16.96d | 0d | Labor [31.18 h]; Carpenter [15.59 h]; Operator [31.18 h]; Boom Truck [16 h]; Wood Door TD2 size (0.9m x 2.2m) For guard room 1 [1] | 2,781.51 | 0.00139840168639332 | Cons. | Z2 | GRS | Cons | GrdRms | SUB.C | Guards |
|  | Sanitarywares | **Install Sanitarywares** |  | 2026-11-28 | 2026-12-03 |  |  |  |  |  |  |  |  |  |  |  |  |  |
| B8.31 23 16.01119 |  | Toilet | 2d | 2026-11-28 | 2026-11-30 | B8.31 23 16.0195, B8.31 23 16.01107, B8.31 23 16.01109, DMM2-Proc-Delv-7362 | 15.96d | 0d | Labor [31.18 h]; Plumber Helper [15.59 h]; Plumber [15.59 h]; Operator [31.18 h]; Boom Truck [16 h]; Toilet [1] | 793.71 | 0.000399039438903691 | Cons. | Z2 | GRS | Cons | GrdRms | SUB.C | Guards |
| B8.31 23 16.01121 |  | Shower | 2d | 2026-11-30 | 2026-12-02 | B8.31 23 16.0195, B8.31 23 16.0197, B8.31 23 16.01107, B8.31 23 16.01109, B8.31 23 16.01119, DMM2-Proc-Delv-7361 | 15.96d | 0d | Labor [31.18 h]; Plumber Helper [15.59 h]; Plumber [15.59 h]; Operator [31.18 h]; Boom Truck [16 h]; Shower [1] | 927.17 | 0.000466134565799002 | Cons. | Z2 | GRS | Cons | GrdRms | SUB.C | Guards |
| B8.31 23 16.01123 |  | Semi pedestal sink | 1d | 2026-12-02 | 2026-12-03 | B8.31 23 16.0195, B8.31 23 16.01107, B8.31 23 16.01109, B8.31 23 16.01121, DMM2-Proc-Delv-7363 | 15.96d | 0d | Labor [31.18 h]; Plumber Helper [15.59 h]; Plumber [15.59 h]; Operator [31.18 h]; Boom Truck [16 h]; Semi pedestal sink [2] | 1,204.62 | 0.000605621803291891 | Cons. | Z2 | GRS | Cons | GrdRms | SUB.C | Guards |
|  | Tech | **Install Final Electrical & Tech Components** |  | 2026-11-23 | 2026-12-13 |  |  |  |  |  |  |  |  |  |  |  |  |  |
| B8.31 23 16.01147 |  | WALL MOUNTED BULK HEAD OUTDOOR LED 15 WATTS, IP65 | 2d | 2026-11-23 | 2026-11-25 | B8.31 23 16.01137, DMM2-Proc-Delv-7367 | 25.96d | 10d | Labor [31.18 h]; Operator [31.18 h]; Boom Truck [16 h]; Electrician [15.59 h]; WALL MOUNTED BULK HEAD OUTDOOR LED 15 WATTS, IP65,230V 60 HZ, For guard room 1&2 [5] | 3,187.14 | 0.000640935027973635 | Cons. | Z2 | GRS | Cons | GrdRms | SUB.C | Guards |
| B8.31 23 16.01131 |  | Data Cabinet including all devices 12U | 2d | 2026-11-28 | 2026-11-30 | B8.31 23 16.0195, B8.31 23 16.01107, B8.31 23 16.01109, B8.31 23 16.0185, DMM2-Proc-Delv-7373 | 17.96d | 0d | Labor [31.18 h]; Operator [31.18 h]; Boom Truck [16 h]; Electrician [15.59 h]; Data Cabinet including all devices 12U for guard room 1 [1] | 10,082.98 | 0.0050692123975623 | Cons. | Z2 | GRS | Cons | GrdRms | SUB.C | Guards |
| B8.31 23 16.01101 |  | 50-inch screen | 2d | 2026-11-30 | 2026-12-02 | B8.31 23 16.0185, B8.31 23 16.01131, DMM2-Proc-Delv-7376 | 17.96d | 0d | Labor [31.18 h]; Operator [31.18 h]; Boom Truck [16 h]; Electrician [15.59 h]; 50 inch screen for guard room 1 [4] | 10,662.47 | 0.00536055152869592 | Cons. | Z2 | GRS | Cons | GrdRms | SUB.C | Guards |
| B8.31 23 16.01133 |  | PC workstation | 2d | 2026-12-02 | 2026-12-05 | B8.31 23 16.0195, B8.31 23 16.01107, B8.31 23 16.01109, B8.31 23 16.0185, B8.31 23 16.01101, DMM2-Proc-Delv-7375 | 17.96d | 0d | Labor [31.18 h]; Operator [31.18 h]; Boom Truck [16 h]; Electrician [15.59 h]; PC workstation for guard room 1 [2] | 18,543.41 | 0.00932269131598015 | Cons. | Z2 | GRS | Cons | GrdRms | SUB.C | Guards |
| B8.31 23 16.01125 |  | ROUND RECESSED LED 11.5 WATTS, IP20 | 2d | 2026-12-08 | 2026-12-10 | B8.31 23 16.0199, B8.31 23 16.01143, DMM2-Proc-Delv-7367 | 16.96d | 0d | Labor [31.18 h]; Operator [31.18 h]; Boom Truck [16 h]; Electrician [15.59 h]; ROUND RECESSED LED 11.5 WATTS, IP20, 230V, 60HZ, 1400 LUMENS, For guard room 1&2 [14] | 7,621.04 | 0.00328412989540209 | Cons. | Z2 | GRS | Cons | GrdRms | SUB.C | Guards |
| B8.31 23 16.01127 |  | ROUND RECESSED LED 11.5 WATTS, IP20, with Emergency | 2d | 2026-12-10 | 2026-12-13 | B8.31 23 16.0199, B8.31 23 16.01125, DMM2-Proc-Delv-7367 | 16.96d | 0d | Labor [31.18 h]; Operator [31.18 h]; Boom Truck [16 h]; Electrician [15.59 h]; ROUND RECESSED LED 11.5 WATTS, IP20, 230V, 60HZ, 1400 LUMENS, with 3 hour emergency battery kit For guard room 1 [2] | 1,436.41 | 0.000722155444741644 | Cons. | Z2 | GRS | Cons | GrdRms | SUB.C | Guards |
| B8.31 23 16.01129 |  | ROUND RECESSED LED 11.5 WATTS, IP44 | 2d | 2026-12-10 | 2026-12-13 | B8.31 23 16.0199, B8.31 23 16.01127 SS, DMM2-Proc-Delv-7367 | 16.96d | 1d | Labor [31.18 h]; Operator [31.18 h]; Boom Truck [16 h]; Electrician [15.59 h]; ROUND RECESSED LED 11.5 WATTS, IP44, 230V, 60HZ, 1400 LUMENS, For guard room 1 [2] | 1,123.84 | 0.000565011594907886 | Cons. | Z2 | GRS | Cons | GrdRms | SUB.C | Guards |

| ID | WBS | Activity | Duration | Start | Finish | Predecessors | Complete | Total float | Free float | Resources | Cost | Actual cost | Weight % | DMM2 Weekly Progress | DMM2 Zones | Networks & Stations | DMM2 Phases | Networks Components | Subcontractors works | Yellow Sheet |
| --- | --- | --- | --- | --- | --- | --- | --- | --- | --- | --- | --- | --- | --- | --- | --- | --- | --- | --- | --- | --- |
|  | Fire | **Install Fire Equipments** |  | 2026-12-05 | 2026-12-09 |  |  |  |  |  |  |  |  |  |  |  |  |  |  |  |
| B8.31 23 16.01103 |  | CO2 fire extinguishers | 2d | 2026-12-05 | 2026-12-07 | B8.31 23 16.0185, B8.31 23 16.01133, DMM2-Proc-Delv-7364 |  | 17.96d | 0d | Labor [46.78 h]; MEP Specialist [23.39 h]; GR CO2 fire extinguishers [1] | 1,101.01 |  | 0.000553534796886313 | Cons. | Z2 | GRS | Cons | GrdRms | SUB.C | Guards |
| B8.31 23 16.01105 |  | Powder fire extinguishers | 2d | 2026-12-07 | 2026-12-09 | B8.31 23 16.0185, B8.31 23 16.01103, DMM2-Proc-Delv-7364 |  | 17.96d | 2d | Labor [31.18 h]; MEP Specialist [15.59 h]; Powder fire extinguishers For guard room type 1&2 [4] | 1,763.03 |  | 0.000886361939511744 | Cons. | Z2 | GRS | Cons | GrdRms | SUB.C | Guards |
|  | Potable Water PumpST | **Potable Water Pump Station** |  | 2025-12-07 | 2026-12-02 |  |  |  |  |  |  |  |  |  |  |  |  |  |  |  |
|  | Earthworks | **Earthworks & Substructure** |  | 2025-12-07 | 2026-08-04 |  |  |  |  |  |  |  |  |  |  |  |  |  |  |  |
| B3.2.31 23 16.01 |  | Excavation | 60.71d | 2025-12-07 A | 2026-02-15 A | B3.33 14 11.01.0114, B1.1.31 23 23.102 | 100% |  |  | Labor [70.87 h]; Operator [70.87 h]; Surveyor [35.44 h]; Surveyor Helper [35.44 h]; Excavator (With Bucket) [40 h]; Loader [40 h]; Water Tanker [40 h]; Dump Truck [40 h]; Roller Compactor [40 h]; Excavation [2805.07] | 130,531 | 130,531 | 0.0612949297413349 | Cons. | Z2 | Pump | Cons | Pumpst | SUB.C | Pump |
| B3.2.03 30 00.01 |  | Footings & Ground Beams Construction | 48.8d | 2026-02-24 A | 2026-05-02 A | B3.2.31 23 16.01 | 100% |  |  | Labor [85.05 h]; Laboratory Officer [42.52 h]; Carpenter [42.52 h]; Steelfixer [42.52 h]; Mason [42.52 h]; Surveyor [42.52 h]; Surveyor Helper [42.52 h]; Footings for Potable water pump station & Potable water tank & chlorination [402.69] | 433,821.96 | 433,821.96 | 0.204731828743648 | Cons. | Z2 | Pump | Cons | Pumpst | SUB.C | Pump |
| B3.2.32 11 23.01.5 |  | Aggregate Base Course below Slab on Grade | 4d | 2026-05-02 A | 2026-05-05 A | B3.2.31 23 16.01 | 100% |  |  | Labor [56.7 h]; Operator [56.7 h]; Surveyor [28.35 h]; Surveyor Helper [28.35 h]; Loader [32 h]; Water Tanker [32 h]; Dump Truck [32 h]; Roller Compactor [32 h]; Aggregate base course [56] | 4,867.53 | 4,867.53 | 0.00244715016234164 | Cons. | Z2 | Pump | Cons | Pumpst | SUB.C | Pump |
| B3.2.32 11 23.01.7 |  | 100mm Lean Concrete under Foundations | 8d | 2026-05-07 A | 2026-05-17 A | B3.2.03 30 00.01 | 100% |  |  | Labor [42.52 h]; Laboratory Officer [21.26 h]; Carpenter [21.26 h]; Mason [21.26 h]; Surveyor [21.26 h]; Surveyor Helper [21.26 h]; 100 mm thickness lean concrete [108.3] | 47,448.73 | 47,448.73 | 0.0211455589394276 | Cons. | Z2 | Pump | Cons | Pumpst | SUB.C | Pump |
| B3.2.32 11 23.01.9 |  | 50mm Lean Concrete under Slab on Grade | 3d | 2026-05-20 A | 2026-05-23 A | B3.2.32 11 23.01.5 | 100% |  |  | Labor [42.52 h]; Laboratory Officer [21.26 h]; Carpenter [21.26 h]; Mason [21.26 h]; Surveyor [21.26 h]; Surveyor Helper [21.26 h]; 50 mm thickness lean concrete [16.73] | 7,329.77 | 7,329.77 | 0.00330397850175792 | Cons. | Z2 | Pump | Cons | Pumpst | SUB.C | Pump |
| B3.2.32 11 23.01.11 |  | Vapor Retarders below Slab on Grade | 2d | 2026-07-29 A | 2026-07-30 A | B3.2.32 11 23.01.9 | 100% |  |  | Labor [28.35 h]; Foreman [14.17 h]; Vapor retarders below slab on grade for Potable water pump station & chlorination [280]; Vapor retarders for roof for Potable water pump station & Potable water tank & chlorination [1034] | 8,081.12 | 8,081.12 | 0.00434723693765036 | Cons. | Z2 | Pump | Cons | Pumpst | SUB.C | Pump |
| B3.2.32 11 23.01.15 |  | Waterproofing Paint below Slab on Grade | 3d | 2026-08-01 A | 2026-08-03 A | B3.2.32 11 23.01.11 | 100% |  |  | Labor [42.52 h]; Foreman [21.26 h]; Water proofing Paint below slab on grade for Potable water pump station & chlorination [461] | 18,619.84 | 18,619.84 | 0.00659948565049926 | Cons. | Z2 | Pump | Cons | Pumpst | SUB.C | Pump |
| B3.2.32 11 23.01.19 |  | Slab on Grade & Ground Beams Pouring | 3d | 2026-08-02 A | 2026-08-04 A | B3.2.32 11 23.01.15 | 100% |  |  | Labor [28.35 h]; Carpenter [14.17 h]; Steelfixer [14.17 h]; Mason [14.17 h]; Surveyor [14.17 h]; Surveyor Helper [14.17 h]; Slab on grade and ground beams for Potable water pump station & Chlorination [70.03] | 77,534.41 | 77,534.41 | 0.0333975425728688 | Cons. | Z2 | Pump | Cons | Pumpst | SUB.C | Pump |
|  | Superstructure | **Superstructure** |  | 2026-06-24 | 2026-10-24 |  |  |  |  |  |  |  |  |  |  |  |  |  |  |  |
| B3.2.32 11 23.01.25 |  | Reinforced Concrete Walls & Columns | 26.4d | 2026-06-24 A | 2026-07-25 A | B3.2.32 11 23.01.19 | 100% |  |  | Labor [56.7 h]; Carpenter [28.35 h]; Steelfixer [28.35 h]; Mason [28.35 h]; Surveyor [28.35 h]; Surveyor Helper [28.35 h]; Reinforced Concrete Walls and columns for Potable water pump station & Potable water tank & chlorination [521.48] | 677,631.97 | 677,631.97 | 0.312274845860651 | Cons. | Z2 | Pump | Cons | Pumpst | SUB.C | Pump |
| B3.2.32 11 23.01.39 |  | Roof Slab & Beams Construction (75.00% Completed) | 36d | 2026-08-05 A | 2026-09-15 A | B3.2.32 11 23.01.19 | 100% |  |  | Labor [46.78 h]; Carpenter [23.39 h]; Steelfixer [23.39 h]; Mason [23.39 h]; Surveyor [23.39 h]; Surveyor Helper [23.39 h]; Roof Slab and beams for Potable water pump station & Potable water tank & chlorination [221.25] | 274,291.59 | 274,291.59 | 0.17825762687097 | Cons. | Z2 | Pump | Cons | Pumpst | SUB.C | Pump |
| B3.2.32 11 23.01.27 |  | CMU (Concrete Masonry Unit) Walls Construction (75.00% Completed) | 17d | 2026-08-27 A | 2026-09-15 A | B3.2.32 11 23.01.19 | 100% |  |  | Labor [70.17 h]; Mason [35.08 h]; Operator [70.17 h]; JCB [36 h]; Concrete masonry unit, 200mm thick wall; for Potable water pump station, for Potable water tank, and for chlorination [482.25] | 54,195.25 | 54,195.25 | 0.0336169933498274 | Cons. | Z2 | Pump | Cons | Pumpst | SUB.C | Pump |
| B3.2.32 11 23.01.27_R |  | CMU (Concrete Masonry Unit) Walls Construction(Rem) | 2.5d | 2026-10-21 | 2026-10-24 | DMM2-Proc-Delv-7293 FF, B3.2.32 11 23.01.19, B3.2.32 11 23.01.27 |  | 35.82d | 9.9d | Labor [23.39 h]; Mason [11.69 h]; Operator [23.39 h]; JCB [12 h]; Concrete masonry unit, 200mm thick wall; for Potable water pump station, for Potable water tank, and for chlorination [160.75] | 18,065.08 |  | 0.0336169933498274 | Cons. | Z2 | Pump | Cons | Pumpst | SUB.C | Pump |
| B3.2.32 11 23.01.39_R |  | Roof Slab & Beams Construction(Rem) | 2d | 2026-10-21 | 2026-10-22 | B3.2.32 11 23.01.19, B3.2.32 11 23.01.39 |  | 26.32d | 0d | Labor [15.59 h]; Carpenter [7.8 h]; Steelfixer [7.8 h]; Mason [7.8 h]; Surveyor [7.8 h]; Surveyor Helper [7.8 h]; Roof Slab and beams for Potable water pump station & Potable water tank & chlorination [73.75] | 91,430.53 |  | 0.17825762687097 | Cons. | Z2 | Pump | Cons | Pumpst | SUB.C | Pump |
|  | 1 | **Building Envelope & Waterproofing** |  | 2026-10-21 | 2026-11-30 |  |  |  |  |  |  |  |  |  |  |  |  |  |  |  |
| B3.2.32 11 23.01.21 |  | Sloped Screed for Roof | 4d | 2026-10-21 | 2026-10-25 | B3.2.32 11 23.01.15 |  | 46.32d | 0d | Labor [46.78 h]; Carpenter [23.39 h]; Mason [23.39 h]; Sloped screed [1061] | 30,741.49 |  | 0.0164603768547773 | Cons. | Z2 | Pump | Cons | Pumpst | SUB.C | Pump |
| B3.2.32 11 23.01.43 |  | External Plastering | 4d | 2026-10-21 | 2026-10-25 | B3.2.32 11 23.01.25 |  | 28.32d | 0d | Labor [77.96 h]; Mason [38.98 h]; External plastering for Potable water pump station & Potable water tank & chlorination [1198.51] | 43,146.36 |  | 0.0221713156102626 | Cons. | Z2 | Pump | Cons | Pumpst | SUB.C | Pump |
| B3.2.32 11 23.01.49 |  | Waterproofing Membrane for Roof | 2d | 2026-10-24 | 2026-10-25 | B3.2.32 11 23.01.39_R |  | 44.32d | 2d | Labor [31.18 h]; Mason [15.59 h]; Water proofing Membrane for roof for Potable water pump station & Potable water tank & chlorination [1124.28] | 84,892.13 |  | 0.0428967396821469 | Cons. | Z2 | Pump | Cons | Pumpst | SUB.C | Pump |
| B3.2.32 11 23.01.29 |  | Geotextile Membrane for Roof | 2d | 2026-10-26 | 2026-10-27 | B3.2.32 11 23.01.21 |  | 46.32d | 0d | Labor [46.78 h]; Mason [23.39 h]; Geotextile membrane for roof for Potable water pump station & Potable water tank & chlorination [1034] | 7,258.7 |  | 0.0039881219548746 | Cons. | Z2 | Pump | Cons | Pumpst | SUB.C | Pump |
| B3.2.32 11 23.01.65 |  | Water proofing with 50mm screed protection | 2d | 2026-10-26 | 2026-10-27 | B3.2.32 11 23.01.43 |  | 42.32d | 0d | Labor [31.18 h]; Mason [15.59 h]; Water proofing Membrane with 50mm screed protection fc' 20MPa [1083.17] | 138,849.4 |  | 0.0689578994972732 | Cons. | Z2 | Pump | Cons | Pumpst | SUB.C | Pump |
| B3.2.32 11 23.01.41 |  | 50mm Foam Concrete for Roof | 2d | 2026-10-28 | 2026-10-29 | B3.2.32 11 23.01.29 |  | 46.32d | 0d | Labor [46.78 h]; Carpenter [23.39 h]; Mason [23.39 h]; 50mm foam concrete for roof layers for Potable water pump station & Potable water tank & chlorination [1061] | 30,737.17 |  | 0.016458104420615 | Cons. | Z2 | Pump | Cons | Pumpst | SUB.C | Pump |
| B3.2.32 11 23.01.79 |  | Stainless steel at top of tank size of 950x950mm | 2d | 2026-10-28 | 2026-10-29 | B3.2.32 11 23.01.49, B3.2.32 11 23.01.65, B3.2.32 11 23.01.39_R |  | 42.32d | 5.2d | Welder [15.59 h]; Stainless steel A36 cover at top of Potable water tank size of 950x950mm [2] | 4,172.27 |  | 0.00209760755709921 | Cons. | Z2 | Pump | Cons | Pumpst | SUB.C | Pump |
| B3.2.32 11 23.01.51 |  | Gravel for Roof | 2d | 2026-10-31 | 2026-11-01 | B3.2.32 11 23.01.41, DMM2-Proc-Delv-7297, B6.33 42 11.052 |  | 46.32d | 0d | Labor [31.18 h]; Foreman [15.59 h]; Operator [31.18 h]; JCB [16 h]; Gravel For Roof [1061] | 72,661.71 |  | 0.03890634529311 | Cons. | Z2 | Pump | Cons | Pumpst | SUB.C | Pump |
| B3.2.32 11 23.01.69 |  | Stone Copping Installation | 2d | 2026-11-02 | 2026-11-03 | B3.2.32 11 23.01.51 |  | 46.32d | 8.2d | Labor [46.78 h]; Mason [23.39 h]; Stone copping 30mm thickness for Potable water pump station & Potable water tank & chlorination [211] | 40,386.35 |  | 0.0226137062555709 | Cons. | Z2 | Pump | Cons | Pumpst | SUB.C | Pump |
| B3.2.32 11 23.01.250 |  | External Painting | 2d | 2026-11-28 | 2026-11-30 | B3.2.32 11 23.01.143, B3.2.32 11 23.01.59, B3.2.32 11 23.01.75, B3.2.32 11 23.01.95, B3.2.32 11 23.01.109, B3.2.32 11 23.01.121, B3.2.32 11 23.01.61, B3.2.32 11 23.01.77, B3.2.32 11 23.01.97, B3.2.32 11 23.01.135, B3.2.32 11 23.01.233 |  | 27.92d | 2d | Labor [46.78 h]; Painter [23.39 h]; External painting for Potable water pump station & water tank & chlorination [1359] | 47,728.08 |  | 0.0226887468580197 | Cons. | Z2 | Pump | Cons | Pumpst | SUB.C | Pump |

| ID | WBS | Activity | Duration | Start | Finish | Predecessors | Total float | Free float | Resources | Cost | Weight % | DMM2 Weekly Progress | DMM2 Zones | Networks & Stations | DMM2 Phases | Networks Components | Subcontractors works | Yellow Sheet | JANCO | All Electrical Scope |
| --- | --- | --- | --- | --- | --- | --- | --- | --- | --- | --- | --- | --- | --- | --- | --- | --- | --- | --- | --- | --- |
|  | 2 | **Interior Finishes & Fixed Installations** |  | 2026-10-21 | 2026-11-08 |  |  |  |  |  |  |  |  |  |  |  |  |  |  |  |
| B3.2.32 11 23.01.31 |  | Lean Concrete for Equipment Pads | 3d | 2026-10-21 | 2026-10-24 | B3.2.32 11 23.01.19 | 27.32d | 1.4d | Labor [31.18 h]; Carpenter [15.59 h]; Mason [15.59 h]; Lean concrete [1] | 438.12 | 0.000220265233450528 | Cons. | Z2 | Pump | Cons | Pumpst | SUB.C | Pump |  |  |
| B3.2.32 11 23.01.33 |  | Stairs Construction | 3d | 2026-10-22 | 2026-10-26 | B3.2.32 11 23.01.19, DMM2-Proc-Delv-7292 | 37.12d | 0d | Labor [62.37 h]; Carpenter [31.18 h]; Steelfixer [31.18 h]; Mason [31.18 h]; Stairs for Potable water pump station [2.22] | 2,198.64 | 0.000995828914017784 | Cons. | Z2 | Pump | Cons | Pumpst | SUB.C | Pump |  |  |
| B3.2.32 11 23.01.45 |  | Internal Plastering | 3d | 2026-10-26 | 2026-10-29 | B3.2.32 11 23.01.25, B3.2.32 11 23.01.33 | 37.12d | 0d | Labor [62.37 h]; Mason [31.18 h]; Internal plastering for Potable water pump station& chlorination walls and ceiling [1137] | 37,934.87 | 0.0166899128152087 | Cons. | Z2 | Pump | Cons | Pumpst | SUB.C | Pump |  |  |
| B3.2.32 11 23.01.63 |  | Water proofing Membrane with protection board | 3d | 2026-10-29 | 2026-11-02 | B3.2.32 11 23.01.45 | 40.12d | 3d | Labor [31.18 h]; Mason [15.59 h]; Water proofing Membrane with protection board [786.13] | 63,500.44 | 0.0434529229708845 | Cons. | Z2 | Pump | Cons | Pumpst | SUB.C | Pump |  |  |
| B3.2.32 11 23.01.71 |  | Internal Painting (Acrylic/Emulsion) | 2d | 2026-11-05 | 2026-11-08 | B3.2.32 11 23.01.45, B3.2.32 11 23.01.63, B3.2. 26 28 16 .01, B3.2. 26 28 16 .02, B3.2. 26 28 16 .03, B3.2.32 11 23.01.290, B3.2. 26 24 16 .01, B3.2. 26 24 16 .02, B3.2. 26 24 16 .03 | 37.12d | 0d | Labor [46.78 h]; Painter [23.39 h]; Internal painting (Acrylic) for Potable water pump station & chlorination walls [694]; Internal painting (Emulsion) for Potable water pump station& chlorination ceiling [443] | 38,106.28 | 0.0166586316529123 | Cons. | Z2 | Pump | Cons | Pumpst | SUB.C | Pump |  |  |
| B3.2.32 11 23.01.91 |  | Epoxy Paint for Floors & Non-Toxic Epoxy for Tank | 2d | 2026-11-05 | 2026-11-08 | B3.2.32 11 23.01.71 SS, B3.2.32 11 23.01.89, B3.2.32 11 23.01.79 | 37.12d | 2.8d | Labor [31.18 h]; Mason [15.59 h]; Concrete Finishing - Epoxy paint for internal floors [3314] | 154,213.68 | 0.0821164898443079 | Cons. | Z2 | Pump | Cons | Pumpst | SUB.C | Pump |  |  |
|  | 3 | **Mechanical & Piping Rough-In** |  | 2026-10-22 | 2026-11-21 |  |  |  |  |  |  |  |  |  |  |  |  |  |  |  |
| B3.2.32 11 23.01.53 |  | Overhead Crane Installation | 2d | 2026-10-24 | 2026-10-26 | B3.2.32 11 23.01.39_R, DMM2-Proc-Delv-2538_R | 25.92d | 0d | Labor [31.18 h]; Operator [31.18 h]; Mobile Crane [16 h]; Low Bed Truck [16 h]; MEP Specialist [15.59 h]; OverHead Crane [1] | 98,511.6 | 0.0099053341384872 | Cons. | Z2 | Pump | Cons | Pumpst | SUB.C | Pump | PWPS |  |
| B3.2.32 11 23.01.73 |  | Surge Tank | 2d | 2026-10-26 | 2026-10-28 | B3.2.32 11 23.01.53, B3.2.32 11 23.01.31, DMM2-Proc-Delv-3778 | 31.92d | 0d | Labor [31.18 h]; Operator [31.18 h]; Mobile Crane [16 h]; Low Bed Truck [16 h]; MEP Specialist [15.59 h]; Surge Tank [2] | 630,474.24 | 0.00950912077294772 | Cons. | Z2 | Pump | Cons | Pumpst | SUB.C | Pump | PWPS |  |
| B3.2.32 11 23.01.93 |  | Control Panel | 2d | 2026-10-26 | 2026-10-28 | B3.2.32 11 23.01.53, B3.2.32 11 23.01.73 SS, DMM2-Proc-Delv-3828_R | 31.92d | 4d | Electrician [15.59 h]; MEP Specialist [15.59 h]; Local Control Panel, IP 65 [3] | 34,421.1 | 0.0133250345861532 | Cons. | Z2 | Pump | Cons | Pumpst | SUB.C | Pump | PWPS | allElec |
|  | 1 | **Major Equipment** |  | 2026-10-26 | 2026-11-04 |  |  |  |  |  |  |  |  |  |  |  |  |  |  |  |
|  | 5 | **Pumps** |  | 2026-10-26 | 2026-11-04 |  |  |  |  |  |  |  |  |  |  |  |  |  |  |  |
| B3.2.32 11 23.01.81 |  | Water Pump - Vertical multistage cintrifugal pump | 2d | 2026-10-26 | 2026-10-28 | B3.2.32 11 23.01.31, B3.2.32 11 23.01.53, DMM2-Proc-Delv-2508 | 29.92d | 0d | Labor [46.78 h]; Foreman [23.39 h]; Plumber Helper [23.39 h]; Plumber [23.39 h]; Operator [46.78 h]; Boom Truck [24 h]; MEP Specialist [23.39 h]; Vertical multistage cintrifugal pump [3] | 522,141.8 | 0.202130079757183 | Cons. | Z2 | Pump | Cons | Pumpst | SUB.C | Pump | PWPS |  |
| B3.2.32 11 23.01.123 |  | Submersible pump | 3d | 2026-10-27 | 2026-10-31 | B3.2.32 11 23.01.31, B3.2.32 11 23.01.53, B3.2.32 11 23.01.111 FF, DMM2-Proc-Delv-3728 | 29.92d | 0d | Labor [46.78 h]; Foreman [23.39 h]; Plumber Helper [23.39 h]; Plumber [23.39 h]; Operator [46.78 h]; Boom Truck [24 h]; MEP Specialist [23.39 h]; Submersible pump [2] | 308,283.36 | 0.11934210220869 | Cons. | Z2 | Pump | Cons | Pumpst | SUB.C | Pump | PWPS |  |
| B3.2.32 11 23.01.111 |  | Fire Pump - Vertical multistage cintrifugal (jockey) pump | 2d | 2026-10-28 | 2026-10-31 | B3.2.32 11 23.01.31, B3.2.32 11 23.01.53, B3.2.32 11 23.01.99 FF, DMM2-Proc-Delv-2518_R | 29.92d | 0d | Labor [46.78 h]; Foreman [23.39 h]; Plumber Helper [23.39 h]; Plumber [23.39 h]; Operator [46.78 h]; Boom Truck [24 h]; MEP Specialist [23.39 h]; Vertical multistage cintrifugal (jockey) pump [1] | 160,805.7 | 0.0622508145919388 | Cons. | Z2 | Pump | Cons | Pumpst | SUB.C | Pump | PWPS |  |
| B3.2.32 11 23.01.99 |  | Fire Pump - split case cintrifugal pump | 2d | 2026-10-28 | 2026-10-31 | B3.2.32 11 23.01.31, B3.2.32 11 23.01.53, B3.2.32 11 23.01.81, DMM2-Proc-Delv-2518_R | 29.92d | 0d | Labor [46.78 h]; Foreman [23.39 h]; Plumber Helper [23.39 h]; Plumber [23.39 h]; Operator [46.78 h]; Boom Truck [24 h]; MEP Specialist [23.39 h]; Split case cintrifugal pump [2] | 2,688,787.2 | 1.04087848542917 | Cons. | Z2 | Pump | Cons | Pumpst | SUB.C | Pump | PWPS |  |
| B3.2.32 11 23.01.139 |  | Manually Operated Fuel Pump | 2d | 2026-10-31 | 2026-11-02 | B3.2.32 11 23.01.31, B3.2.32 11 23.01.53, B3.2.32 11 23.01.123 | 41.92d | 0d | Labor [46.78 h]; Foreman [23.39 h]; Plumber Helper [23.39 h]; Plumber [23.39 h]; Operator [46.78 h]; Boom Truck [24 h]; MEP Specialist [23.39 h]; Supply, install, test and commission of manually operated fuel pump with flow range of Q= 0.2-1.6 L / REVOLUTION [1] | 4,844.81 | 0.00243572766141951 | Cons. | Z2 | Pump | Cons | Pumpst | SUB.C | Pump | PWPS |  |
| B3.2.32 11 23.01.149 |  | Positive Displacement Rotary Type Pump | 2d | 2026-11-02 | 2026-11-04 | B3.2.32 11 23.01.31, B3.2.32 11 23.01.53, B3.2.32 11 23.01.139 | 41.92d | 10d | Labor [46.78 h]; Foreman [23.39 h]; Plumber Helper [23.39 h]; Plumber [23.39 h]; Operator [46.78 h]; Boom Truck [24 h]; MEP Specialist [23.39 h]; Supply, install, test and commission of positive displacement rotary type pump [1] | 6,432.25 | 0.00323380955573242 | Cons. | Z2 | Pump | Cons | Pumpst | SUB.C | Pump | PWPS |  |
|  | 1 | **Chlorination System** |  | 2026-10-26 | 2026-11-04 |  |  |  |  |  |  |  |  |  |  |  |  |  |  |  |
| B3.2.32 11 23.01.83 |  | Chlorine Cylinder racks | 2d | 2026-10-26 | 2026-10-28 | B3.2.32 11 23.01.31, B3.2.32 11 23.01.53, DMM2-Proc-Delv-7308 | 25.92d | 0d | Labor [46.78 h]; Foreman [23.39 h]; Plumber Helper [23.39 h]; Plumber [23.39 h]; Operator [46.78 h]; Boom Truck [24 h]; MEP Specialist [23.39 h]; Chlorine Cylinder racks [2] | 38,245.78 | 0.019228050839209 | Cons. | Z2 | Pump | Cons | Pumpst | SUB.C | Pump | PWPS |  |
| B3.2.32 11 23.01.101 |  | Chlorinators | 2d | 2026-10-28 | 2026-10-31 | B3.2.32 11 23.01.31, B3.2.32 11 23.01.53, B3.2.32 11 23.01.83, DMM2-Proc-Delv-7309 | 25.92d | 0d | Labor [46.78 h]; Foreman [23.39 h]; Plumber Helper [23.39 h]; Plumber [23.39 h]; Operator [46.78 h]; Boom Truck [24 h]; MEP Specialist [23.39 h]; Chlorinators [2] | 580,640.45 | 0.291916771831628 | Cons. | Z2 | Pump | Cons | Pumpst | SUB.C | Pump | PWPS |  |
| B3.2.32 11 23.01.113 |  | Discharge Line Analyzer | 2d | 2026-10-28 | 2026-10-31 | B3.2.32 11 23.01.31, B3.2.32 11 23.01.53, B3.2.32 11 23.01.101 FF, DMM2-Proc-Delv-7310 | 25.92d | 0d | Labor [46.78 h]; Foreman [23.39 h]; Plumber Helper [23.39 h]; Plumber [23.39 h]; Operator [46.78 h]; Boom Truck [24 h]; MEP Specialist [23.39 h]; Discharge Line Analyzer [1] | 245,931.94 | 0.123642193578186 | Cons. | Z2 | Pump | Cons | Pumpst | SUB.C | Pump | PWPS |  |
| B3.2.32 11 23.01.125 |  | Motive Water Pumps (Injection) | 2d | 2026-10-31 | 2026-11-02 | B3.2.32 11 23.01.31, B3.2.32 11 23.01.53, B3.2.32 11 23.01.83, B3.2.32 11 23.01.101, B3.2.32 11 23.01.113 SS, DMM2-Proc-Delv-2508 | 25.92d | 0d | Labor [46.78 h]; Foreman [23.39 h]; Plumber Helper [23.39 h]; Plumber [23.39 h]; Operator [46.78 h]; Boom Truck [24 h]; MEP Specialist [23.39 h]; Motive Water Pumps [2] | 36,298.37 | 0.0182489936959114 | Cons. | Z2 | Pump | Cons | Pumpst | SUB.C | Pump | PWPS |  |
| B3.2.32 11 23.01.127 |  | Motive Water Pumps (Water) | 2d | 2026-10-31 | 2026-11-02 | B3.2.32 11 23.01.31, B3.2.32 11 23.01.53, B3.2.32 11 23.01.83, B3.2.32 11 23.01.101, B3.2.32 11 23.01.113, DMM2-Proc-Delv-2508 | 25.92d | 0d | Labor [46.78 h]; Foreman [23.39 h]; Plumber Helper [23.39 h]; Plumber [23.39 h]; Operator [46.78 h]; Boom Truck [24 h]; MEP Specialist [23.39 h]; Motive Water Pumps [2] | 56,093.8 | 0.0282011392198362 | Cons. | Z2 | Pump | Cons | Pumpst | SUB.C | Pump | PWPS |  |
| B3.2.32 11 23.01.137 |  | Control Panel | 2d | 2026-11-02 | 2026-11-04 | B3.2.32 11 23.01.31, B3.2.32 11 23.01.53, B3.2.32 11 23.01.83, B3.2.32 11 23.01.101, B3.2.32 11 23.01.113, B3.2.32 11 23.01.125, B3.2.32 11 23.01.127, DMM2-Proc-Delv-3828_R, B3.2.32 11 23.01.3 | 25.92d | 0d | Labor [31.18 h]; Foreman [15.59 h]; Plumber Helper [15.59 h]; Plumber [15.59 h]; Operator [31.18 h]; Boom Truck [16 h]; MEP Specialist [15.59 h]; Control Panel [1] | 73,246.46 | 0.0368246306981212 | Cons. | Z2 | Pump | Cons | Pumpst | SUB.C | Pump | PWPS | allElec |

| ID | WBS | Activity | Duration | Start | Finish | Predecessors | Total float | Free float | Resources | Cost | Weight % | DMM2 Weekly Progress | DMM2 Zones | Networks & Stations | DMM2 Phases | JANCO | Networks Components | Subcontractors works | Yellow Sheet |
| --- | --- | --- | --- | --- | --- | --- | --- | --- | --- | --- | --- | --- | --- | --- | --- | --- | --- | --- | --- |
|  | 2 | **Internal Piping & Valves Installation** |  | 2026-11-02 | 2026-11-21 |  |  |  |  |  |  |  |  |  |  |  |  |  |  |
|  | 1 | **Pipes** |  | 2026-11-02 | 2026-11-21 |  |  |  |  |  |  |  |  |  |  |  |  |  |  |
|  | 1 | **Double Flanged DI Pipes** |  | 2026-11-02 | 2026-11-09 |  |  |  |  |  |  |  |  |  |  |  |  |  |  |
| B3.2.32 11 23.01.147 |  | Double Flanged DI Pipe ?60 mm | 2d | 2026-11-02 | 2026-11-04 | B3.2.32 11 23.01.101, B3.2.32 11 23.01.137 SS, B3.2.32 11 23.01.73, B3.2.32 11 23.01.93, B3.2.32 11 23.01.123, DMM2-Proc-Delv-3738_R | 31.92d | 0d | Labor [31.18 h]; Foreman [15.59 h]; Plumber Helper [15.59 h]; Plumber [15.59 h]; Operator [31.18 h]; Boom Truck [16 h]; MEP Specialist [15.59 h]; DDI Dia. 60 mm [10] | 4,302.2 | 0.00166545995905269 | Cons. | Z2 | Pump | Cons | PWPS | Pumpst | SUB.C | Pump |
| B3.2.32 11 23.01.155 |  | Double Flanged DI Pipe ?80 mm | 2d | 2026-11-04 | 2026-11-07 | B3.2.32 11 23.01.101, B3.2.32 11 23.01.137, B3.2.32 11 23.01.73, B3.2.32 11 23.01.93, B3.2.32 11 23.01.123, B3.2.32 11 23.01.147 SS, DMM2-Proc-Delv-3738_R | 29.92d | 0d | Labor [31.18 h]; Foreman [15.59 h]; Plumber Helper [15.59 h]; Plumber [15.59 h]; Operator [31.18 h]; Boom Truck [16 h]; MEP Specialist [15.59 h]; DDI Dia. 80 mm [30] | 13,512.3 | 0.00523085737639064 | Cons. | Z2 | Pump | Cons | PWPS | Pumpst | SUB.C | Pump |
| B3.2.32 11 23.01.161 |  | Double Flanged DI Pipe ?100 mm | 2d | 2026-11-04 | 2026-11-07 | B3.2.32 11 23.01.101, B3.2.32 11 23.01.137, B3.2.32 11 23.01.73, B3.2.32 11 23.01.93, B3.2.32 11 23.01.123, B3.2.32 11 23.01.155 SS, DMM2-Proc-Delv-3738_R | 29.92d | 0d | Labor [31.18 h]; Foreman [15.59 h]; Plumber Helper [15.59 h]; Plumber [15.59 h]; Operator [31.18 h]; Boom Truck [16 h]; MEP Specialist [15.59 h]; DDI Dia. 100 mm [10] | 5,153.9 | 0.00199516853771598 | Cons. | Z2 | Pump | Cons | PWPS | Pumpst | SUB.C | Pump |
| B3.2.32 11 23.01.169 |  | Double Flanged DI Pipe ?200 mm | 2d | 2026-11-04 | 2026-11-07 | B3.2.32 11 23.01.101, B3.2.32 11 23.01.137, B3.2.32 11 23.01.73, B3.2.32 11 23.01.93, B3.2.32 11 23.01.123, B3.2.32 11 23.01.161 SS, DMM2-Proc-Delv-3738_R | 29.92d | 0d | Labor [31.18 h]; Foreman [15.59 h]; Plumber Helper [15.59 h]; Plumber [15.59 h]; Operator [31.18 h]; Boom Truck [16 h]; MEP Specialist [15.59 h]; DDI Dia. 200 mm [10] | 6,374.3 | 0.00246760760006266 | Cons. | Z2 | Pump | Cons | PWPS | Pumpst | SUB.C | Pump |
| B3.2.32 11 23.01.179 |  | Double Flanged DI Pipe ?300 mm | 2d | 2026-11-07 | 2026-11-09 | B3.2.32 11 23.01.101, B3.2.32 11 23.01.137, B3.2.32 11 23.01.73, B3.2.32 11 23.01.93, B3.2.32 11 23.01.123, B3.2.32 11 23.01.169, DMM2-Proc-Delv-3738_R | 29.92d | 0d | Labor [31.18 h]; Foreman [15.59 h]; Plumber Helper [15.59 h]; Plumber [15.59 h]; Operator [31.18 h]; Boom Truck [16 h]; MEP Specialist [15.59 h]; DDI Dia. 300 mm [10] | 9,192.7 | 0.00355866156050014 | Cons. | Z2 | Pump | Cons | PWPS | Pumpst | SUB.C | Pump |
| B3.2.32 11 23.01.185 |  | Double Flanged DI Pipe ?350 mm | 2d | 2026-11-07 | 2026-11-09 | B3.2.32 11 23.01.101, B3.2.32 11 23.01.137, B3.2.32 11 23.01.73, B3.2.32 11 23.01.93, B3.2.32 11 23.01.123, B3.2.32 11 23.01.179 FF, DMM2-Proc-Delv-3738_R | 29.92d | 0d | Labor [31.18 h]; Foreman [15.59 h]; Plumber Helper [15.59 h]; Plumber [15.59 h]; Operator [31.18 h]; Boom Truck [16 h]; MEP Specialist [15.59 h]; DDI Dia. 350 mm [5] | 5,145.1 | 0.00199176189747617 | Cons. | Z2 | Pump | Cons | PWPS | Pumpst | SUB.C | Pump |
|  | 2 | **PPR Pipes** |  | 2026-11-09 | 2026-11-21 |  |  |  |  |  |  |  |  |  |  |  |  |  |  |
| B3.2.32 11 23.01.199 |  | PPR Pipes with ?25mm | 2d | 2026-11-09 | 2026-11-11 | B3.2.32 11 23.01.185 | 29.92d | 0d | Labor [31.18 h]; Foreman [15.59 h]; Plumber Helper [15.59 h]; Plumber [15.59 h]; Operator [31.18 h]; Boom Truck [16 h]; MEP Specialist [15.59 h]; PPR pipes with Dia. 25mm. [25] | 768.25 | 0.000386238394956564 | Cons. | Z2 | Pump | Cons | PWPS | Pumpst | SUB.C | Pump |
| B3.2.32 11 23.01.203 |  | PPR Pipes with ?32mm | 2d | 2026-11-11 | 2026-11-14 | B3.2.32 11 23.01.185, B3.2.32 11 23.01.199 | 29.92d | 0d | Labor [31.18 h]; Foreman [15.59 h]; Plumber Helper [15.59 h]; Plumber [15.59 h]; Operator [31.18 h]; Boom Truck [16 h]; MEP Specialist [15.59 h]; PPR pipes with Dia. 32mm. [20] | 737.6 | 0.00037082907923197 | Cons. | Z2 | Pump | Cons | PWPS | Pumpst | SUB.C | Pump |
| B3.2.32 11 23.01.209 |  | PPR Pipes with ?40mm | 2d | 2026-11-14 | 2026-11-16 | B3.2.32 11 23.01.185, B3.2.32 11 23.01.203 | 29.92d | 0d | Labor [31.18 h]; Foreman [15.59 h]; Plumber Helper [15.59 h]; Plumber [15.59 h]; Operator [31.18 h]; Boom Truck [16 h]; MEP Specialist [15.59 h]; PPR pipes with Dia. 40mm. [5] | 219.5 | 0.000110353827130446 | Cons. | Z2 | Pump | Cons | PWPS | Pumpst | SUB.C | Pump |
| B3.2.32 11 23.01.213 |  | Hose Bibb Installation | 2d | 2026-11-16 | 2026-11-18 | B3.2.32 11 23.01.199, B3.2.32 11 23.01.203, B3.2.32 11 23.01.209, DMM2-Proc-Delv-7306 | 29.92d | 0d | Labor [31.18 h]; Foreman [15.59 h]; Plumber Helper [15.59 h]; Plumber [15.59 h]; Operator [31.18 h]; Boom Truck [16 h]; MEP Specialist [15.59 h]; Hose bibb [2] | 533.82 | 0.000268378496577563 | Cons. | Z2 | Pump | Cons | PWPS | Pumpst | SUB.C | Pump |
| B3.2.32 11 23.01.217 |  | Emergency Shower Installation | 2d | 2026-11-18 | 2026-11-21 | B3.2.32 11 23.01.213, DMM2-Proc-Delv-7311, DMM2-Proc-Delv-2278 | 29.92d | 0d | Labor [31.18 h]; Foreman [15.59 h]; Plumber Helper [15.59 h]; Plumber [15.59 h]; Operator [31.18 h]; Boom Truck [16 h]; MEP Specialist [15.59 h]; Emergency shower [1] | 8,182.1 | 0.00411354825461265 | Cons. | Z2 | Pump | Cons | PWPS | Pumpst | SUB.C | Pump |
|  | 2 | **Valves** |  | 2026-11-02 | 2026-11-14 |  |  |  |  |  |  |  |  |  |  |  |  |  |  |
|  | 1 | **Gate Valves** |  | 2026-11-02 | 2026-11-11 |  |  |  |  |  |  |  |  |  |  |  |  |  |  |
| B3.2.32 11 23.01.157 |  | Manually operated Gate Valve DN60 | 2d | 2026-11-02 | 2026-11-04 | B3.2.32 11 23.01.147 SS, DMM2-Proc-Delv-3748 | 41.92d | 0d | Labor [31.18 h]; Foreman [15.59 h]; Plumber Helper [15.59 h]; Plumber [15.59 h]; Operator [31.18 h]; Boom Truck [16 h]; Gate Valve DN60, [4] | 3,958.04 | 0.00153222935621982 | Cons. | Z2 | Pump | Cons | PWPS | Pumpst | SUB.C | Pump |
| B3.2.32 11 23.01.163 |  | Manually operated Gate Valve DN80 | 2d | 2026-11-07 | 2026-11-09 | B3.2.32 11 23.01.155, DMM2-Proc-Delv-3748 | 35.92d | 0d | Labor [31.18 h]; Foreman [15.59 h]; Plumber Helper [15.59 h]; Plumber [15.59 h]; Operator [31.18 h]; Boom Truck [16 h]; Gate Valve DN80, [6] | 8,923.98 | 0.00345463515535936 | Cons. | Z2 | Pump | Cons | PWPS | Pumpst | SUB.C | Pump |
| B3.2.32 11 23.01.171 |  | Manually operated Gate Valve DN100 | 2d | 2026-11-07 | 2026-11-09 | B3.2.32 11 23.01.161, DMM2-Proc-Delv-3748 | 39.92d | 10d | Labor [31.18 h]; Foreman [15.59 h]; Plumber Helper [15.59 h]; Plumber [15.59 h]; Operator [31.18 h]; Boom Truck [16 h]; Gate Valve DN100, [3] | 7,074.93 | 0.00273883423088202 | Cons. | Z2 | Pump | Cons | PWPS | Pumpst | SUB.C | Pump |
| B3.2.32 11 23.01.181 |  | Manually operated Gate Valve DN200 | 2d | 2026-11-07 | 2026-11-09 | B3.2.32 11 23.01.169, DMM2-Proc-Delv-3748 | 35.92d | 0d | Labor [31.18 h]; Foreman [15.59 h]; Plumber Helper [15.59 h]; Plumber [15.59 h]; Operator [31.18 h]; Boom Truck [16 h]; Gate Valve DN200, [2] | 13,582.66 | 0.00525809501358065 | Cons. | Z2 | Pump | Cons | PWPS | Pumpst | SUB.C | Pump |
| B3.2.32 11 23.01.193 |  | Manually operated Gate Valve DN350 | 2d | 2026-11-09 | 2026-11-11 | B3.2.32 11 23.01.179, B3.2.32 11 23.01.185, DMM2-Proc-Delv-3748 | 37.92d | 8d | Labor [31.18 h]; Foreman [15.59 h]; Plumber Helper [15.59 h]; Plumber [15.59 h]; Operator [31.18 h]; Boom Truck [16 h]; Gate Valve DN350, [4] | 62,074.6 | 0.0240302079806174 | Cons. | Z2 | Pump | Cons | PWPS | Pumpst | SUB.C | Pump |
|  | 2 | **Non Return Valves** |  | 2026-11-04 | 2026-11-11 |  |  |  |  |  |  |  |  |  |  |  |  |  |  |
| B3.2.32 11 23.01.165 |  | Non return Valve DN60 | 2d | 2026-11-04 | 2026-11-07 | B3.2.32 11 23.01.157, B3.2.32 11 23.01.147, DMM2-Proc-Delv-3758_R | 41.92d | 12d | Labor [31.18 h]; Foreman [15.59 h]; Plumber Helper [15.59 h]; Plumber [15.59 h]; Operator [31.18 h]; Boom Truck [16 h]; Non return Valve DN60 [4] | 4,741.2 | 0.000476728533203527 | Cons. | Z2 | Pump | Cons | PWPS | Pumpst | SUB.C | Pump |
| B3.2.32 11 23.01.187 |  | Non return Valve DN300 | 2d | 2026-11-09 | 2026-11-11 | B3.2.32 11 23.01.179, DMM2-Proc-Delv-3758_R | 37.92d | 8d | Labor [31.18 h]; Foreman [15.59 h]; Plumber Helper [15.59 h]; Plumber [15.59 h]; Operator [31.18 h]; Boom Truck [16 h]; Non return Valve DN300 [2] | 34,050.6 | 0.00342379410121911 | Cons. | Z2 | Pump | Cons | PWPS | Pumpst | SUB.C | Pump |

| ID | WBS | Activity | Duration | Start | Finish | Predecessors | Total float | Free float | Resources | Cost | Weight % | DMM2 Weekly Progress | DMM2 Zones | Networks & Stations | DMM2 Phases | JANCO | Networks Components | Subcontractors works | Yellow Sheet | All Electrical Scope |
| --- | --- | --- | --- | --- | --- | --- | --- | --- | --- | --- | --- | --- | --- | --- | --- | --- | --- | --- | --- | --- |
|  | 3 | **Butterfly Valves** |  | 2026-11-09 | 2026-11-14 |  |  |  |  |  |  |  |  |  |  |  |  |  |  |  |
| B3.2.32 11 23.01.189 |  | Butterfly Valve DN200 | 2d | 2026-11-09 | 2026-11-11 | B3.2.32 11 23.01.169, B3.2.32 11 23.01.181, DMM2-Proc-Delv-2528_R | 35.92d | 0d | Labor [31.18 h]; Foreman [15.59 h]; Plumber Helper [15.59 h]; Plumber [15.59 h]; Operator [31.18 h]; Boom Truck [16 h]; Butterfly Valve DN200 [3] | 8,031.06 | 0.00310896956411828 | Cons. | Z2 | Pump | Cons | PWPS | Pumpst | SUB.C | Pump |  |
| B3.2.32 11 23.01.195 |  | Butterfly Valve DN300 | 2d | 2026-11-11 | 2026-11-14 | B3.2.32 11 23.01.179, B3.2.32 11 23.01.189, DMM2-Proc-Delv-2528_R | 35.92d | 6d | Labor [31.18 h]; Foreman [15.59 h]; Plumber Helper [15.59 h]; Plumber [15.59 h]; Operator [31.18 h]; Boom Truck [16 h]; Butterfly Valve DN300 [2] | 14,423.78 | 0.00558370943006483 | Cons. | Z2 | Pump | Cons | PWPS | Pumpst | SUB.C | Pump |  |
|  | 3 | **Flowmeters** |  | 2026-11-09 | 2026-11-14 |  |  |  |  |  |  |  |  |  |  |  |  |  |  |  |
| B3.2.32 11 23.01.173 |  | Electromagnetic Flowmeter DN80, PN16 | 2d | 2026-11-09 | 2026-11-11 | B3.2.32 11 23.01.163, B3.2.32 11 23.01.155, DMM2-Proc-Delv-3768_R | 35.92d | 0d | Labor [31.18 h]; Foreman [15.59 h]; Plumber Helper [15.59 h]; Plumber [15.59 h]; Operator [31.18 h]; Boom Truck [16 h]; Electromagnetic Flowmeter DN80, PN16 [1] | 19,064.89 | 0.00738036607287996 | Cons. | Z2 | Pump | Cons | PWPS | Pumpst | SUB.C | Pump |  |
| B3.2.32 11 23.01.197 |  | Electromagnetic Flowmeter DN200, PN16 | 2d | 2026-11-11 | 2026-11-14 | B3.2.32 11 23.01.169, B3.2.32 11 23.01.181, B3.2.32 11 23.01.189, DMM2-Proc-Delv-3768_R, B3.2.32 11 23.01.173 | 35.92d | 6d | Labor [31.18 h]; Foreman [15.59 h]; Plumber Helper [15.59 h]; Plumber [15.59 h]; Operator [31.18 h]; Boom Truck [16 h]; Electromagnetic Flowmeter DN200, PN16 [1] | 72,666.79 | 0.0281306383777627 | Cons. | Z2 | Pump | Cons | PWPS | Pumpst | SUB.C | Pump |  |
|  | Strainers | **Strainers** |  | 2026-11-16 | 2026-11-18 |  |  |  |  |  |  |  |  |  |  |  |  |  |  |  |
| B3.2. 22 05 23 .11 |  | Strainer DN80 | 2d | 2026-11-16 | 2026-11-18 | B3.2.32 11 23.01.111, B3.2.32 11 23.01.123, B3.2.32 11 23.01.139, B3.2.32 11 23.01.149, B3.2.32 11 23.01.81, B3.2.32 11 23.01.99, B3.2.32 11 23.01.147, B3.2.32 11 23.01.155, B3.2.32 11 23.01.161, B3.2.32 11 23.01.169, B3.2.32 11 23.01.179, B3.2.32 11 23.01.185, B3.2.32 11 23.01.199, B3.2.32 11 23.01.203, B3.2.32 11 23.01.209, DMM2-Proc-Delv-7303 | 31.92d | 2d | Labor [31.18 h]; Foreman [15.59 h]; Plumber Helper [15.59 h]; Plumber [15.59 h]; Strainer DN80 [4] | 3,536.61 | 0.00177802890674049 | Cons. | Z2 | Pump | Cons | PWPS | Pumpst | SUB.C | Pump |  |
| B3.2. 22 05 23 .12 |  | Strainer DN350 | 2d | 2026-11-16 | 2026-11-18 | B3.2.32 11 23.01.111, B3.2.32 11 23.01.123, B3.2.32 11 23.01.139, B3.2.32 11 23.01.149, B3.2.32 11 23.01.81, B3.2.32 11 23.01.99, B3.2.32 11 23.01.147, B3.2.32 11 23.01.155, B3.2.32 11 23.01.161, B3.2.32 11 23.01.169, B3.2.32 11 23.01.179, B3.2.32 11 23.01.185, B3.2.32 11 23.01.199, B3.2.32 11 23.01.203, B3.2.32 11 23.01.209, DMM2-Proc-Delv-7303 | 31.92d | 2d | Labor [31.18 h]; Foreman [15.59 h]; Plumber Helper [15.59 h]; Plumber [15.59 h]; Strainer DN350 [2] | 23,950.15 | 0.0120409267858573 | Cons. | Z2 | Pump | Cons | PWPS | Pumpst | SUB.C | Pump |  |
|  | 3 | **HVAC & Fire Suppression Fixture Installation** |  | 2026-10-26 | 2026-11-10 |  |  |  |  |  |  |  |  |  |  |  |  |  |  |  |
|  | Fans | **Fans** |  | 2026-10-26 | 2026-10-27 |  |  |  |  |  |  |  |  |  |  |  |  |  |  |  |
| B3.2.32 11 23.01.55 |  | Roof Mounted Fans | 2d | 2026-10-26 | 2026-10-27 | B3.2.32 11 23.01.39_R, B3.2.32 11 23.01.43, DMM2-Proc-Delv-7393 | 28.32d | 0d | Labor [31.18 h]; Electrician [15.59 h]; MEP Specialist [15.59 h]; Fans - EXF-1 Exhaust roof mounted fan air flow capacity = 1280 l/s [2] | 12,516.8 | 0.00629281663828661 | Cons. | Z2 | Pump | Cons | PWPS | Pumpst | SUB.C | Pump | allElec |
| B3.2.32 11 23.01.85 |  | Exhaust Axial Fan | 2d | 2026-10-26 | 2026-10-27 | B3.2.32 11 23.01.39_R, B3.2.32 11 23.01.43, B3.2.32 11 23.01.55 FF, DMM2-Proc-Delv-7307 | 28.32d | 0d | Labor [31.18 h]; Electrician [15.59 h]; MEP Specialist [15.59 h]; Fans - EF-01 Exhaust axial fan air flow capacity = 70 l/s [1] | 1,274.86 | 0.000640937038977313 | Cons. | Z2 | Pump | Cons | PWPS | Pumpst | SUB.C | Pump | allElec |
|  | AC Units | **AC Units** |  | 2026-10-26 | 2026-10-27 |  |  |  |  |  |  |  |  |  |  |  |  |  |  |  |
| B3.2.32 11 23.01.103 |  | DX wall mounted Split/AC | 2d | 2026-10-26 | 2026-10-27 | B3.2.32 11 23.01.39_R, B3.2.32 11 23.01.43, B3.2.32 11 23.01.85 SS | 28.32d | 0d | Labor [31.18 h]; Electrician [15.59 h]; MEP Specialist [15.59 h]; DX wall mounted Split/AC [4] | 13,443.95 | 0.00337947158003543 | Cons. | Z2 | Pump | Cons | PWPS | Pumpst | SUB.C | Pump | allElec |
|  | FM200 System | **FM200 System** |  | 2026-10-28 | 2026-10-29 |  |  |  |  |  |  |  |  |  |  |  |  |  |  |  |
| B3.2.32 11 23.01.1 |  | FM200 system for Electrcal Room - Second Fix | 2d | 2026-10-28 | 2026-10-29 | B3.2.32 11 23.01.115 SS | 28.32d | 0d | Labor [46.78 h]; Electrician [23.39 h]; MEP Specialist [23.39 h]; FM200 supression system for Electrcal Room, room area 21m2 room volume 71m3. [0.03] | 1,323.64 | 0.000665458417451959 | Cons. | Z2 | Pump | Cons | PWPS | Pumpst | SUB.C | Pump |  |
| B3.2.32 11 23.01.115 |  | FM200 system for Electrcal Room - First Fix | 2d | 2026-10-28 | 2026-10-29 | B3.2.32 11 23.01.39_R, B3.2.32 11 23.01.43, B3.2.32 11 23.01.103, DMM2-Proc-Delv-7305 | 28.32d | 0d | Labor [46.78 h]; Electrician [23.39 h]; MEP Specialist [23.39 h]; FM200 supression system for Electrcal Room, room area 21m2 room volume 71m3. [0.2] | 8,824.25 | 0.00443638944967974 | Cons. | Z2 | Pump | Cons | PWPS | Pumpst | SUB.C | Pump |  |
| B3.2.32 11 23.01.3 |  | FM200 system for Electrcal Room - Final Fix | 2d | 2026-10-28 | 2026-10-29 | B3.2.32 11 23.01.1 SS | 28.32d | 2.4d | Labor [31.18 h]; Electrician [15.59 h]; MEP Specialist [15.59 h]; FM200 supression system for Electrcal Room, room area 21m2 room volume 71m3. [0.77] | 33,973.46 | 0.0170801431530271 | Cons. | Z2 | Pump | Cons | PWPS | Pumpst | SUB.C | Pump |  |
|  | Fire Extinguishers | **Fire Extinguishers** |  | 2026-11-08 | 2026-11-10 |  |  |  |  |  |  |  |  |  |  |  |  |  |  |  |
| B3.2.32 11 23.01.270 |  | CO2 fire extinguishers | 2d | 2026-11-08 | 2026-11-10 | B3.2.32 11 23.01.71 | 41.12d | 11.2d | Labor [62.37 h]; MEP Specialist [31.18 h]; CO2 fire extinguishers [5] | 5,649.96 | 0.0028405175653561 | Cons. | Z2 | Pump | Cons | PWPS | Pumpst | SUB.C | Pump |  |
| B3.2.32 11 23.01.280 |  | Powder fire extinguishers | 2d | 2026-11-08 | 2026-11-10 | B3.2.32 11 23.01.71 | 41.12d | 11.2d | Labor [31.18 h]; MEP Specialist [15.59 h]; Powder fire extinguishers [7] | 3,288.12 | 0.00165310033041409 | Cons. | Z2 | Pump | Cons | PWPS | Pumpst | SUB.C | Pump |  |
|  | 4 | **External & Underground Piping** |  | 2026-10-22 | 2026-11-14 |  |  |  |  |  |  |  |  |  |  |  |  |  |  |  |
|  | 1 | **Buried Pipes** |  | 2026-10-22 | 2026-11-03 |  |  |  |  |  |  |  |  |  |  |  |  |  |  |  |
| B3.2.32 11 23.01.13 |  | Buried DI Pipe ?80 mm | 2d | 2026-10-22 | 2026-10-25 | B3.2.31 23 16.01, B3.2.32 11 23.01.7, DMM2-Proc-Delv-3738_R | 38.12d | 0d | Labor [31.18 h]; Plumber Helper [15.59 h]; Plumber [15.59 h]; BDI Dia. 80 mm [15] | 5,689.5 | 0.00220250905049287 | Cons. | Z2 | Pump | Cons | PWPS | Pumpst | SUB.C | Pump |  |
| B3.2.32 11 23.01.17 |  | Buried DI Pipe ?100 mm | 2d | 2026-10-25 | 2026-10-27 | B3.2.31 23 16.01, B3.2.32 11 23.01.7, B3.2.32 11 23.01.13, DMM2-Proc-Delv-3738_R | 38.12d | 0d | Labor [31.18 h]; Plumber Helper [15.59 h]; Plumber [15.59 h]; BDI Dia. 100 mm [5] | 2,190.6 | 0.000848021148784533 | Cons. | Z2 | Pump | Cons | PWPS | Pumpst | SUB.C | Pump |  |
| B3.2.32 11 23.01.23 |  | Buried DI Pipe ?200 mm | 2d | 2026-10-27 | 2026-10-29 | B3.2.31 23 16.01, B3.2.32 11 23.01.7, B3.2.32 11 23.01.17, DMM2-Proc-Delv-3738_R | 38.12d | 0d | Labor [31.18 h]; Plumber Helper [15.59 h]; Plumber [15.59 h]; BDI Dia. 200 mm [15] | 8,455.2 | 0.00327316188131247 | Cons. | Z2 | Pump | Cons | PWPS | Pumpst | SUB.C | Pump |  |
| B3.2.32 11 23.01.37 |  | Buried DI Pipe ?300 mm | 2d | 2026-10-29 | 2026-11-01 | B3.2.31 23 16.01, B3.2.32 11 23.01.7, B3.2.32 11 23.01.23, DMM2-Proc-Delv-3738_R | 38.12d | 0d | Labor [31.18 h]; Plumber Helper [15.59 h]; Plumber [15.59 h]; BDI Dia. 300 mm [15] | 12,590.55 | 0.00487403116718218 | Cons. | Z2 | Pump | Cons | PWPS | Pumpst | SUB.C | Pump |  |
| B3.2.32 11 23.01.57 |  | Buried DI Pipe ?350 mm | 2d | 2026-11-01 | 2026-11-03 | B3.2.31 23 16.01, B3.2.32 11 23.01.7, B3.2.32 11 23.01.37, DMM2-Proc-Delv-3738_R | 38.12d | 0d | Labor [31.18 h]; Plumber Helper [15.59 h]; Plumber [15.59 h]; BDI Dia. 350 mm [15] | 13,565.1 | 0.00525129721782951 | Cons. | Z2 | Pump | Cons | PWPS | Pumpst | SUB.C | Pump |  |

| ID | WBS | Activity | Duration | Start | Finish | Predecessors | Total float | Free float | Resources | Cost | Weight % | DMM2 Weekly Progress | DMM2 Zones | Networks & Stations | DMM2 Phases | JANCO | Networks Components | Subcontractors works | Yellow Sheet | All Electrical Scope |
| --- | --- | --- | --- | --- | --- | --- | --- | --- | --- | --- | --- | --- | --- | --- | --- | --- | --- | --- | --- | --- |
|  | 2 | **uPVC** |  | 2026-11-03 | 2026-11-05 |  |  |  |  |  |  |  |  |  |  |  |  |  |  |  |
| B3.2.32 11 23.01.87 |  | uPVC Pipes ?110mm | 2d | 2026-11-03 | 2026-11-05 | B3.2.31 23 16.01, B3.2.32 11 23.01.7, B3.2.32 11 23.01.57 | 38.12d | 0d | Labor [31.18 h]; Plumber Helper [15.59 h]; Plumber [15.59 h]; uPVC pipes with Dia. 110mm. [75] | 8,034.02 | 0.00403910089825059 | Cons. | Z2 | Pump | Cons | PWPS | Pumpst | SUB.C | Pump |  |
|  | 3 | **Drains** |  | 2026-11-05 | 2026-11-14 |  |  |  |  |  |  |  |  |  |  |  |  |  |  |  |
| B3.2.32 11 23.01.105 |  | Trench drain | 2d | 2026-11-05 | 2026-11-08 | B3.2.31 23 16.01, B3.2.32 11 23.01.7, B3.2.32 11 23.01.87, DMM2-Proc-Delv-7312 | 38.12d | 0d | Labor [46.78 h]; Plumber Helper [23.39 h]; Plumber [23.39 h]; Pump St. Trench drain, dimensions 18000mmX300mmX300mm [1] | 33,378.14 | 0.0167808453742659 | Cons. | Z2 | Pump | Cons | PWPS | Pumpst | SUB.C | Pump |  |
| B3.2.32 11 23.01.117 |  | Scupper ?110mm | 2d | 2026-11-08 | 2026-11-10 | B3.2.31 23 16.01, B3.2.32 11 23.01.7, B3.2.32 11 23.01.105 | 38.12d | 0d | Labor [31.18 h]; Plumber Helper [15.59 h]; Plumber [15.59 h]; Scupper with Dia. 110mm [10] | 15,646.04 | 0.00235981227236851 | Cons. | Z2 | Pump | Cons | PWPS | Pumpst | SUB.C | Pump |  |
| B3.2.32 11 23.01.129 |  | Manholes | 3d | 2026-11-10 | 2026-11-14 | B3.2.31 23 16.01, B3.2.32 11 23.01.7, B3.2.32 11 23.01.117 | 38.12d | 0d | Labor [46.78 h]; Plumber Helper [23.39 h]; Plumber [23.39 h]; Operator [46.78 h]; Boom Truck [24 h]; Pump St. Manholes, dimensions 600mmX600mm [1] | 4,346.11 | 0.00218500577718282 | Cons. | Z2 | Pump | Cons | PWPS | Pumpst | SUB.C | Pump |  |
|  | 4 | **Electrical & Control Systems** |  | 2026-10-21 | 2026-12-02 |  |  |  |  |  |  |  |  |  |  |  |  |  |  |  |
|  | 5 | **Primary Power Installation** |  | 2026-10-21 | 2026-10-31 |  |  |  |  |  |  |  |  |  |  |  |  |  |  |  |
|  | 1 | **Generator** |  | 2026-10-21 | 2026-10-26 |  |  |  |  |  |  |  |  |  |  |  |  |  |  |  |
| B3.2.32 11 23.01.35 |  | Standby Diesel Generator | 5d | 2026-10-21 | 2026-10-26 | B3.2.32 11 23.01.19, DMM2-Proc-Delv-3848 | 41.32d | 0d | Labor [62.37 h]; Operator [62.37 h]; Boom Truck [32 h]; Electrician [31.18 h]; MEP Specialist [31.18 h]; Standby Diesel Generator Set 550 KVA, 400/230KVA, 3P, 60Hz in Sound Attenuated Enclosure [1] | 379,675.3 | 0.146979222163386 | Cons. | Z2 | Pump | Cons | PWPS | Pumpst | SUB.C | Pump | allElec |
|  | 2 | **Fuel Tank** |  | 2026-10-27 | 2026-10-28 |  |  |  |  |  |  |  |  |  |  |  |  |  |  |  |
| B3.2.32 11 23.01.47 |  | Underground Fuel Tank | 2d | 2026-10-27 | 2026-10-28 | B3.2.32 11 23.01.19, B3.2.32 11 23.01.35 | 41.32d | 0d | Labor [62.37 h]; Plumber Helper [31.18 h]; Plumber [31.18 h]; Operator [62.37 h]; Boom Truck [32 h]; MEP Specialist [31.18 h]; Supply, install, test and commission 7572m3 capacity under ground fuel tank [1] | 13,229.73 | 0.00665124385780252 | Cons. | Z2 | Pump | Cons | PWPS | Pumpst | SUB.C | Pump | allElec |
|  | 3 | **ATS** |  | 2026-10-29 | 2026-10-31 |  |  |  |  |  |  |  |  |  |  |  |  |  |  |  |
| B3.2.32 11 23.01.67 |  | Automatic Transfer Switch ATS | 2d | 2026-10-29 | 2026-10-31 | B3.2.32 11 23.01.19, B3.2.32 11 23.01.47, DMM2-Proc-Delv-3878 | 41.32d | 0d | Labor [46.78 h]; Operator [46.78 h]; Boom Truck [24 h]; Electrician [23.39 h]; MEP Specialist [23.39 h]; supply, install, test & commission Automatic Transfer Switch ATS panel [1] | 87,617.38 | 0.0339182832288374 | Cons. | Z2 | Pump | Cons | PWPS | Pumpst | SUB.C | Pump | allElec |
|  | 4 | **Motor Control Center (MCC)** |  | 2026-10-29 | 2026-10-31 |  |  |  |  |  |  |  |  |  |  |  |  |  |  |  |
| B3.2.32 11 23.01.89 |  | MCC Installation | 2d | 2026-10-29 | 2026-10-31 | B3.2.32 11 23.01.19, B3.2.32 11 23.01.67 FF, DMM2-Proc-Delv-3808_R | 41.32d | 4.2d | Labor [62.37 h]; Operator [62.37 h]; Boom Truck [32 h]; Electrician [31.18 h]; MEP Specialist [31.18 h]; MCC - 200AT/200AF, 400V, 3PH, 60HZ, [1] | 157,711.63 | 0.015857892803238 | Cons. | Z2 | Pump | Cons | PWPS | Pumpst | SUB.C | Pump | allElec |
|  | Hand Holes | **Hand Holes** |  | 2026-10-24 | 2026-10-29 |  |  |  |  |  |  |  |  |  |  |  |  |  |  |  |
| B3.2. 26 05 43 .02 |  | Hand Hole (EHH-2) 400mm x 400mm x 600mm | 3d | 2026-10-24 | 2026-10-26 | B3.2.32 11 23.01.39_R, B3.2.31 23 16.01 | 30.32d | 0d | Labor [46.78 h]; Operator [46.78 h]; Boom Truck [24 h]; Electrician [23.39 h]; Electrical Hand Hole (EHH-2) 400mm x 400mm x 600mm [6] | 29,205.85 | 0.0146832327896576 | Cons. | Z2 | Pump | Cons | PWPS | Pumpst | SUB.C | Pump | allElec |
| B3.2. 26 05 43 .01 |  | Hand Hole (EHH-1) 600mm x 600mm x 800mm | 3d | 2026-10-27 | 2026-10-29 | B3.2.32 11 23.01.39_R, B3.2.31 23 16.01, B3.2. 26 05 43 .02 | 30.32d | 4.4d | Labor [46.78 h]; Operator [46.78 h]; Boom Truck [24 h]; Electrician [23.39 h]; Electrical Hand Hole (EHH-1) 600mm x 600mm x 800mm [5] | 33,609.94 | 0.027035812860357 | Cons. | Z2 | Pump | Cons | PWPS | Pumpst | SUB.C | Pump | allElec |
|  | 2 | **Cable Tray, Conduit Installation & Power Cable Pulling** |  | 2026-11-04 | 2026-11-21 |  |  |  |  |  |  |  |  |  |  |  |  |  |  |  |
| B3.2.32 11 23.01.145 |  | 4x1Cx 630mm2 Cu/XLPE//PVC | 2d | 2026-11-04 | 2026-11-07 | B3.2.32 11 23.01.25, B3.2.32 11 23.01.27_R, B3.2.32 11 23.01.93, B3.2.32 11 23.01.73, B3.2.32 11 23.01.123, B3.2.32 11 23.01.137, B3.2. 26 05 43 .02, B3.2. 26 05 43 .01 | 25.92d | 0d | Labor [31.18 h]; Electrician [15.59 h]; MEP Specialist [15.59 h]; 4x1Cx 630mm2 Cu/XLPE//PVC from nearest power supply (SEC) and from generator to the ATS and from ATS to MCC-PW [60] | 102,989.4 | 0.0398690720809961 | Cons. | Z2 | Pump | Cons | PWPS | Pumpst | SUB.C | Pump | allElec |
| B3.2.32 11 23.01.153 |  | 4Cx 10mm2 Cu/XLPE/SWA/PVC | 2d | 2026-11-07 | 2026-11-09 | B3.2.32 11 23.01.25, B3.2.32 11 23.01.27_R, B3.2.32 11 23.01.93, B3.2.32 11 23.01.73, B3.2.32 11 23.01.123, B3.2.32 11 23.01.137, B3.2.32 11 23.01.145, B3.2. 26 05 43 .02, B3.2. 26 05 43 .01 | 25.92d | 0d | Labor [31.18 h]; Electrician [15.59 h]; MEP Specialist [15.59 h]; 4Cx 10mm2 Cu/XLPE/SWA/PVC from MCC-PW to ELP [10] | 878 | 0.000339889787561774 | Cons. | Z2 | Pump | Cons | PWPS | Pumpst | SUB.C | Pump | allElec |
| B3.2.32 11 23.01.159 |  | 4/Cx35mm²+1Cx16mm² | 2d | 2026-11-09 | 2026-11-11 | B3.2.32 11 23.01.25, B3.2.32 11 23.01.27_R, B3.2.32 11 23.01.93, B3.2.32 11 23.01.73, B3.2.32 11 23.01.123, B3.2.32 11 23.01.137, B3.2.32 11 23.01.153, B3.2. 26 05 43 .02, B3.2. 26 05 43 .01 | 25.92d | 0d | Labor [31.18 h]; Electrician [15.59 h]; MEP Specialist [15.59 h]; 4/Cx35mm²+1Cx16mm², CU/MICA/XLPE/LSOH, FIRE RESISTANT CABLE FROM MCC-PW TO Fire pump control panel [30] | 5,794.8 | 0.00224327259790771 | Cons. | Z2 | Pump | Cons | PWPS | Pumpst | SUB.C | Pump | allElec |
| B3.2.32 11 23.01.167 |  | 4/Cx6mm² Cu/XLPE/PVC + 1Cx6mm² Cu/PVC | 2d | 2026-11-11 | 2026-11-14 | B3.2.32 11 23.01.25, B3.2.32 11 23.01.27_R, B3.2.32 11 23.01.93, B3.2.32 11 23.01.73, B3.2.32 11 23.01.123, B3.2.32 11 23.01.137, B3.2.32 11 23.01.159, B3.2. 26 05 43 .02, B3.2. 26 05 43 .01 | 25.92d | 0d | Labor [31.18 h]; Electrician [15.59 h]; MEP Specialist [15.59 h]; 4/Cx6mm² Cu/XLPE/PVC + 1Cx6mm² Cu/PVC from MCC-PW to potable water pumps [75] | 5,465.25 | 0.00211569779210933 | Cons. | Z2 | Pump | Cons | PWPS | Pumpst | SUB.C | Pump | allElec |
| B3.2.32 11 23.01.175 |  | 4Cx 25mm2 + 1Cx16mm2 Cu/XLPE/PVC | 2d | 2026-11-14 | 2026-11-16 | B3.2.32 11 23.01.25, B3.2.32 11 23.01.27_R, B3.2.32 11 23.01.93, B3.2.32 11 23.01.73, B3.2.32 11 23.01.123, B3.2.32 11 23.01.137, B3.2.32 11 23.01.167, B3.2. 26 05 43 .02, B3.2. 26 05 43 .01 | 25.92d | 0d | Labor [31.18 h]; Electrician [15.59 h]; MEP Specialist [15.59 h]; 4Cx 25mm2 + 1Cx16mm2 Cu/XLPE/PVC FROM MCC-PW to DB-PW [15] | 2,028.15 | 0.000785133795721438 | Cons. | Z2 | Pump | Cons | PWPS | Pumpst | SUB.C | Pump | allElec |
| B3.2.32 11 23.01.177 |  | 3Cx 6mm2 Cu/XLPE/PVC | 2d | 2026-11-16 | 2026-11-18 | B3.2.32 11 23.01.25, B3.2.32 11 23.01.27_R, B3.2.32 11 23.01.93, B3.2.32 11 23.01.73, B3.2.32 11 23.01.123, B3.2.32 11 23.01.137, B3.2.32 11 23.01.175, B3.2. 26 05 43 .02, B3.2. 26 05 43 .01 | 25.92d | 0d | Labor [31.18 h]; Electrician [15.59 h]; MEP Specialist [15.59 h]; 3Cx 6mm2 Cu/XLPE/PVC FROM MCC-PW to the two fuel pumps. [25] | 1,690.25 | 0.000654326552877322 | Cons. | Z2 | Pump | Cons | PWPS | Pumpst | SUB.C | Pump | allElec |
| B3.2.32 11 23.01.183 |  | 4Cx 25mm2 + 1Cx11mm2 Cu/XLPE/PVC | 2d | 2026-11-18 | 2026-11-21 | B3.2.32 11 23.01.25, B3.2.32 11 23.01.27_R, B3.2.32 11 23.01.93, B3.2.32 11 23.01.73, B3.2.32 11 23.01.123, B3.2.32 11 23.01.137, B3.2.32 11 23.01.177, B3.2. 26 05 43 .02, B3.2. 26 05 43 .01 | 25.92d | 0d | Labor [31.18 h]; Electrician [15.59 h]; MEP Specialist [15.59 h]; 4Cx 25mm2 + 1Cx11mm2 Cu/XLPE/PVC FROM MCC-PW to DB-CH [45] | 6,084.45 | 0.00235540138716428 | Cons. | Z2 | Pump | Cons | PWPS | Pumpst | SUB.C | Pump | allElec |
| B3.2.32 11 23.01.191 |  | 3Cx 6mm2 Cu/XLPE/PVC | 2d | 2026-11-18 | 2026-11-21 | B3.2.32 11 23.01.25, B3.2.32 11 23.01.27_R, B3.2.32 11 23.01.93, B3.2.32 11 23.01.73, B3.2.32 11 23.01.123, B3.2.32 11 23.01.137, B3.2.32 11 23.01.183 SS, B3.2. 26 05 43 .02, B3.2. 26 05 43 .01 | 25.92d | 0d | Labor [31.18 h]; Electrician [15.59 h]; MEP Specialist [15.59 h]; 3Cx 6mm2 Cu/XLPE/PVC FROM MCC-SPS to the two fuel pumps. [20] | 1,211.6 | 0.000469032422106884 | Cons. | Z2 | Pump | Cons | PWPS | Pumpst | SUB.C | Pump | allElec |
| B3.2.32 11 23.01.201 |  | 4Cx 10mm2 + 1Cx10mm2 Cu/XLPE/PVC | 2d | 2026-11-18 | 2026-11-21 | B3.2.32 11 23.01.25, B3.2.32 11 23.01.27_R, B3.2.32 11 23.01.93, B3.2.32 11 23.01.73, B3.2.32 11 23.01.123, B3.2.32 11 23.01.137, B3.2.32 11 23.01.191 SS, B3.2. 26 05 43 .02, B3.2. 26 05 43 .01 | 25.92d | 0d | Labor [31.18 h]; Electrician [15.59 h]; MEP Specialist [15.59 h]; 4Cx 10mm2 + 1Cx10mm2 Cu/XLPE/PVC FROM MCC-PW to EPS [15] | 1,343.4 | 0.000520054602062067 | Cons. | Z2 | Pump | Cons | PWPS | Pumpst | SUB.C | Pump | allElec |
| B3.2.32 11 23.01.205 |  | 4Cx 6mm2 Cu/XLPE/SWA/PVC | 2d | 2026-11-18 | 2026-11-21 | B3.2.32 11 23.01.25, B3.2.32 11 23.01.27_R, B3.2.32 11 23.01.93, B3.2.32 11 23.01.73, B3.2.32 11 23.01.123, B3.2.32 11 23.01.137, B3.2.32 11 23.01.201 SS, B3.2. 26 05 43 .02, B3.2. 26 05 43 .01 | 25.92d | 0d | Labor [31.18 h]; Electrician [15.59 h]; MEP Specialist [15.59 h]; 4Cx 6mm2 Cu/XLPE/SWA/PVC FROM EPS to LIGHTING POLES [320] | 22,758.4 | 0.00881019104925503 | Cons. | Z2 | Pump | Cons | PWPS | Pumpst | SUB.C | Pump | allElec |

| ID | WBS | Activity | Duration | Start | Finish | Predecessors | Total float | Free float | Resources | Cost | Weight % | DMM2 Weekly Progress | DMM2 Zones | Networks & Stations | DMM2 Phases | JANCO | Networks Components | All Electrical Scope | Subcontractors works | Yellow Sheet |
| --- | --- | --- | --- | --- | --- | --- | --- | --- | --- | --- | --- | --- | --- | --- | --- | --- | --- | --- | --- | --- |
|  | 1 | **Enclosed Switches and Circuit Breakers** |  | 2026-10-26 | 2026-11-01 |  |  |  |  |  |  |  |  |  |  |  |  |  |  |  |
| B3.2. 26 28 16 .02 |  | 40A, 3P, 60Hz Isolator/disconnect switches IP65 | 2d | 2026-10-26 | 2026-10-28 | B3.2.32 11 23.01.45 SS | 44.12d | 7d | Labor [31.18 h]; Electrician [15.59 h]; MEP Specialist [15.59 h]; 40A, 3P, 60Hz Isolator/disconnect switches IP65 [4] | 2,820.13 | 0.00141781792695724 | Cons. | Z2 | Pump | Cons | PWPS | Pumpst | allElec | SUB.C | Pump |
| B3.2. 26 28 16 .03 |  | 20A, 1P, 60Hz Isolator/disconnect switches IP65 | 2d | 2026-10-26 | 2026-10-28 | B3.2.32 11 23.01.45 SS | 44.12d | 7d | Labor [31.18 h]; Electrician [15.59 h]; MEP Specialist [15.59 h]; 20A, 1P, 60Hz Isolator/disconnect switches IP65 [6] | 3,387.31 | 0.00170296819425495 | Cons. | Z2 | Pump | Cons | PWPS | Pumpst | allElec | SUB.C | Pump |
| B3.2. 26 28 16 .01 |  | 630A, 3P, 60Hz Isolator/disconnect switches IP65 | 2d | 2026-10-29 | 2026-11-01 | B3.2.32 11 23.01.45 | 41.12d | 4d | Labor [31.18 h]; Electrician [15.59 h]; MEP Specialist [15.59 h]; 630A, 3P, 60Hz Isolator/disconnect switches IP65 [2] | 13,357.93 | 0.00671569652585782 | Cons. | Z2 | Pump | Cons | PWPS | Pumpst | allElec | SUB.C | Pump |
|  | Panelboards | **Panelboards** |  | 2026-10-29 | 2026-11-05 |  |  |  |  |  |  |  |  |  |  |  |  |  |  |  |
| B3.2. 26 24 16 .01 |  | DB-PW Panel: 100 Ampere, 3P, IP66,60Hz | 2d | 2026-10-29 | 2026-11-01 | B3.2.32 11 23.01.45, DMM2-Proc-Delv-3838 | 37.12d | 0d | Labor [31.18 h]; Electrician [15.59 h]; MEP Specialist [15.59 h]; DB-PW Panel: 100 Ampere, 3P, IP66,60Hz incomer MCCB [1] | 6,258.38 | 0.00242273285726749 | Cons. | Z2 | Pump | Cons | PWPS | Pumpst | allElec | SUB.C | Pump |
| B3.2. 26 24 16 .02 |  | DB-CL Panel: 100 Ampere, 3P, IP66,60Hz | 2d | 2026-11-01 | 2026-11-03 | B3.2.32 11 23.01.45, B3.2. 26 24 16 .01, DMM2-Proc-Delv-3838 | 37.12d | 0d | Labor [31.18 h]; Electrician [15.59 h]; MEP Specialist [15.59 h]; DB-CL Panel: 100 Ampere, 3P, IP66,60Hz incomer MCCB [1] | 6,026.59 | 0.0023330027275876 | Cons. | Z2 | Pump | Cons | PWPS | Pumpst | allElec | SUB.C | Pump |
| B3.2. 26 24 16 .03 |  | ELP Panel: phtocell , timer,40 Ampere, 3P, IP66,60Hz | 2d | 2026-11-03 | 2026-11-05 | B3.2.32 11 23.01.45, B3.2. 26 24 16 .02, DMM2-Proc-Delv-3838 | 37.12d | 0d | Labor [31.18 h]; Electrician [15.59 h]; MEP Specialist [15.59 h]; ELP Panel: phtocell , timer,40 Ampere, 3P, IP66,60Hz incomer MCCB & 5ways outgoing MCCB [1] | 10,163.73 | 0.00393456495505152 | Cons. | Z2 | Pump | Cons | PWPS | Pumpst | allElec | SUB.C | Pump |
|  | 3 | **Lighting** |  | 2026-10-29 | 2026-11-30 |  |  |  |  |  |  |  |  |  |  |  |  |  |  |  |
|  | 1 | **Poles** |  | 2026-11-21 | 2026-11-23 |  |  |  |  |  |  |  |  |  |  |  |  |  |  |  |
| B3.2.32 11 23.01.207 |  | 7m Single Arm Galvanized Steel Pole | 2d | 2026-11-21 | 2026-11-23 | B3.2.32 11 23.01.71, B3.2.32 11 23.01.145 SS, B3.2.32 11 23.01.153, B3.2.32 11 23.01.159, B3.2.32 11 23.01.167, B3.2.32 11 23.01.175, B3.2.32 11 23.01.177, B3.2.32 11 23.01.183, B3.2.32 11 23.01.191, B3.2.32 11 23.01.201, B3.2.32 11 23.01.205 | 25.92d | 0d | Labor [46.78 h]; Operator [46.78 h]; Boom Truck [24 h]; Electrician [23.39 h]; Pump St. 7 meter single arm galvanized steel pole with 1x80 watts LED Lighting Luminaire (10000 Lumens) 230V, 60Hz [19] | 128,385.04 | 0.0645455311778244 | Cons. | Z2 | Pump | Cons | PWPS | Pumpst | allElec | SUB.C | Pump |
|  | 2 | **Fixtures (LEDs)** |  | 2026-10-29 | 2026-11-28 |  |  |  |  |  |  |  |  |  |  |  |  |  |  |  |
| B3.2.32 11 23.01.290 |  | Install addressable fire alarm system including smoke detector | 2d | 2026-10-29 | 2026-11-01 | B3.2.32 11 23.01.45, DMM2-Proc-Delv-3858 | 41.12d | 4d | Labor [31.18 h]; Electrician [15.59 h]; MEP Specialist [15.59 h]; Addressable fire alarm system [1] | 89,418.15 | 0.0346153940861809 | Cons. | Z2 | Pump | Cons | PWPS | Pumpst | allElec | SUB.C | Pump |
| B3.2.32 11 23.01.211 |  | HIGHBAY LED 76 WATTS, IP65, 230V, 60HZ, 12000 LUMENS | 2d | 2026-11-23 | 2026-11-25 | B3.2.32 11 23.01.71, B3.2.32 11 23.01.145, B3.2.32 11 23.01.153, B3.2.32 11 23.01.159, B3.2.32 11 23.01.167, B3.2.32 11 23.01.175, B3.2.32 11 23.01.177, B3.2.32 11 23.01.183, B3.2.32 11 23.01.191, B3.2.32 11 23.01.201, B3.2.32 11 23.01.205, B3.2.32 11 23.01.207, B3.2.32 11 23.01.151 | 25.92d | 0d | Labor [31.18 h]; Operator [31.18 h]; Boom Truck [16 h]; Electrician [15.59 h]; Pump St. HIGHBAY LED 76 WATTS, IP65, 230V, 60HZ, 12000 LUMENS, [6] | 3,060.73 | 0.001538779798518 | Cons. | Z2 | Pump | Cons | PWPS | Pumpst | allElec | SUB.C | Pump |
| B3.2.32 11 23.01.215 |  | HIGHBAY LED 76 WATTS, IP65, 230V, 60HZ, 12000 LUMENS | 2d | 2026-11-23 | 2026-11-25 | B3.2.32 11 23.01.71, B3.2.32 11 23.01.145, B3.2.32 11 23.01.153, B3.2.32 11 23.01.159, B3.2.32 11 23.01.167, B3.2.32 11 23.01.175, B3.2.32 11 23.01.177, B3.2.32 11 23.01.183, B3.2.32 11 23.01.191, B3.2.32 11 23.01.201, B3.2.32 11 23.01.205, B3.2.32 11 23.01.211 SS | 25.92d | 0d | Labor [31.18 h]; Operator [31.18 h]; Boom Truck [16 h]; Electrician [15.59 h]; Pump St. HIGHBAY LED 76 WATTS, IP65, 230V, 60HZ, 12000 LUMENS, with 3 hour emergency battery kit [2] | 1,367.92 | 0.000687723039673263 | Cons. | Z2 | Pump | Cons | PWPS | Pumpst | allElec | SUB.C | Pump |
| B3.2.32 11 23.01.221 |  | Surfaced Mounted Light, IP65, 230V, 60Hz, 4200 Lumens | 2d | 2026-11-25 | 2026-11-28 | B3.2.32 11 23.01.71, B3.2.32 11 23.01.145, B3.2.32 11 23.01.153, B3.2.32 11 23.01.159, B3.2.32 11 23.01.167, B3.2.32 11 23.01.175, B3.2.32 11 23.01.177, B3.2.32 11 23.01.183, B3.2.32 11 23.01.191, B3.2.32 11 23.01.201, B3.2.32 11 23.01.205, B3.2.32 11 23.01.215 | 25.92d | 0d | Labor [31.18 h]; Operator [31.18 h]; Boom Truck [16 h]; Electrician [15.59 h]; Pump St. Surfaced Mounted Light, 36 watts LED IP65, 230V, 60Hz, 4200 lumens [9] | 5,112.64 | 0.0025703794405555 | Cons. | Z2 | Pump | Cons | PWPS | Pumpst | allElec | SUB.C | Pump |
| B3.2.32 11 23.01.225 |  | Surfaced Mounted Light, IP65, 230V, 60Hz, 4200 lumens | 2d | 2026-11-25 | 2026-11-28 | B3.2.32 11 23.01.71, B3.2.32 11 23.01.145, B3.2.32 11 23.01.153, B3.2.32 11 23.01.159, B3.2.32 11 23.01.167, B3.2.32 11 23.01.175, B3.2.32 11 23.01.177, B3.2.32 11 23.01.183, B3.2.32 11 23.01.191, B3.2.32 11 23.01.201, B3.2.32 11 23.01.205, B3.2.32 11 23.01.221 SS | 25.92d | 0d | Labor [31.18 h]; Operator [31.18 h]; Boom Truck [16 h]; Electrician [15.59 h]; Pump St. Surfaced Mounted Light, 36 watts LED IP65, 230V, 60Hz, 4200 lumens with 3 hour emergency battery kit [3] | 2,225.74 | 0.00111898780710272 | Cons. | Z2 | Pump | Cons | PWPS | Pumpst | allElec | SUB.C | Pump |
| B3.2.32 11 23.01.229 |  | WALL MOUNTED LED FLOODLIGHT, IP65, 230V, 60HZ, 4300 LUMENS | 2d | 2026-11-25 | 2026-11-28 | B3.2.32 11 23.01.71, B3.2.32 11 23.01.145, B3.2.32 11 23.01.153, B3.2.32 11 23.01.159, B3.2.32 11 23.01.167, B3.2.32 11 23.01.175, B3.2.32 11 23.01.177, B3.2.32 11 23.01.183, B3.2.32 11 23.01.191, B3.2.32 11 23.01.201, B3.2.32 11 23.01.205, B3.2.32 11 23.01.225 SS | 25.92d | 0d | Labor [31.18 h]; Operator [31.18 h]; Boom Truck [16 h]; Electrician [15.59 h]; Pump St. WALL MOUNTED LED FLOODLIGHT 50 WATTS, IP65, 230V, 60HZ, 4300 LUMENS [8] | 12,425.47 | 0.00624690140218555 | Cons. | Z2 | Pump | Cons | PWPS | Pumpst | allElec | SUB.C | Pump |
| B3.2.32 11 23.01.233 |  | WALL MOUNTED BULK HEAD OUTDOOR LED, IP65,230V 60 HZ | 2d | 2026-11-25 | 2026-11-28 | B3.2.32 11 23.01.145, B3.2.32 11 23.01.153, B3.2.32 11 23.01.159, B3.2.32 11 23.01.167, B3.2.32 11 23.01.175, B3.2.32 11 23.01.177, B3.2.32 11 23.01.183, B3.2.32 11 23.01.191, B3.2.32 11 23.01.201, B3.2.32 11 23.01.205, B3.2.32 11 23.01.229 SS | 25.92d | 0d | Labor [31.18 h]; Operator [31.18 h]; Boom Truck [16 h]; Electrician [15.59 h]; Pump St. WALL MOUNTED BULK HEAD OUTDOOR LED 15 WATTS, IP65,230V 60 HZ [2] | 1,274.86 | 0.000640937038977318 | Cons. | Z2 | Pump | Cons | PWPS | Pumpst | allElec | SUB.C | Pump |
| B3.2.32 11 23.01.237 |  | EMERGENCY EXIT SIGN (CEILING OR WALL MOUNTED) IP65,230V 60 HZ | 2d | 2026-11-25 | 2026-11-28 | B3.2.32 11 23.01.71, B3.2.32 11 23.01.145, B3.2.32 11 23.01.153, B3.2.32 11 23.01.159, B3.2.32 11 23.01.167, B3.2.32 11 23.01.175, B3.2.32 11 23.01.177, B3.2.32 11 23.01.183, B3.2.32 11 23.01.191, B3.2.32 11 23.01.201, B3.2.32 11 23.01.205, B3.2.32 11 23.01.233 SS | 25.92d | 0d | Labor [31.18 h]; Foreman [15.59 h]; Pump St. EMERGENCY EXIT SIGN (CEILING OR WALL MOUNTED) IP65,230V 60 HZ [4] | 2,303.89 | 0.00115827779156853 | Cons. | Z2 | Pump | Cons | PWPS | Pumpst | allElec | SUB.C | Pump |
|  | 3 | **Wiring Devices** |  | 2026-11-28 | 2026-11-30 |  |  |  |  |  |  |  |  |  |  |  |  |  |  |  |
| B3.2.32 11 23.01.239 |  | 13A SINGLE SWITCH SOCKET OUTLET (WEATHER PROOF) | 2d | 2026-11-28 | 2026-11-30 | B3.2.32 11 23.01.71, B3.2.32 11 23.01.145, B3.2.32 11 23.01.153, B3.2.32 11 23.01.159, B3.2.32 11 23.01.167, B3.2.32 11 23.01.175, B3.2.32 11 23.01.177, B3.2.32 11 23.01.183, B3.2.32 11 23.01.191, B3.2.32 11 23.01.201, B3.2.32 11 23.01.205, B3.2.32 11 23.01.237 | 25.92d | 0d | Labor [31.18 h]; Operator [31.18 h]; Boom Truck [16 h]; Electrician [15.59 h]; 13A SINGLE SWITCH SOCKET OUTLET (WEATHER PROOF) [13] | 5,273.33 | 0.00265116648602974 | Cons. | Z2 | Pump | Cons | PWPS | Pumpst | allElec | SUB.C | Pump |
| B3.2.32 11 23.01.241 |  | 13A DOUBLE SWITCH SOCKET OUTLET | 2d | 2026-11-28 | 2026-11-30 | B3.2.32 11 23.01.71, B3.2.32 11 23.01.145, B3.2.32 11 23.01.153, B3.2.32 11 23.01.159, B3.2.32 11 23.01.167, B3.2.32 11 23.01.175, B3.2.32 11 23.01.177, B3.2.32 11 23.01.183, B3.2.32 11 23.01.191, B3.2.32 11 23.01.201, B3.2.32 11 23.01.205, B3.2.32 11 23.01.239 FF | 25.92d | 0d | Labor [31.18 h]; Operator [31.18 h]; Boom Truck [16 h]; Electrician [15.59 h]; 13A DOUBLE SWITCH SOCKET OUTLET [6] | 2,396.95 | 0.00120506379226448 | Cons. | Z2 | Pump | Cons | PWPS | Pumpst | allElec | SUB.C | Pump |
| B3.2.32 11 23.01.243 |  | 13A SINGLE SWITCH SOCKET OUTLET | 2d | 2026-11-28 | 2026-11-30 | B3.2.32 11 23.01.71, B3.2.32 11 23.01.145, B3.2.32 11 23.01.153, B3.2.32 11 23.01.159, B3.2.32 11 23.01.167, B3.2.32 11 23.01.175, B3.2.32 11 23.01.177, B3.2.32 11 23.01.183, B3.2.32 11 23.01.191, B3.2.32 11 23.01.201, B3.2.32 11 23.01.205, B3.2.32 11 23.01.241 FF | 25.92d | 0d | Labor [31.18 h]; Operator [31.18 h]; Boom Truck [16 h]; Electrician [15.59 h]; 13A SINGLE SWITCH SOCKET OUTLET [5] | 1,914.05 | 0.000962290400086702 | Cons. | Z2 | Pump | Cons | PWPS | Pumpst | allElec | SUB.C | Pump |
| B3.2.32 11 23.01.245 |  | 13A SPUR OUTLET | 2d | 2026-11-28 | 2026-11-30 | B3.2.32 11 23.01.71, B3.2.32 11 23.01.145, B3.2.32 11 23.01.153, B3.2.32 11 23.01.159, B3.2.32 11 23.01.167, B3.2.32 11 23.01.175, B3.2.32 11 23.01.177, B3.2.32 11 23.01.183, B3.2.32 11 23.01.191, B3.2.32 11 23.01.201, B3.2.32 11 23.01.205, B3.2.32 11 23.01.243 FF | 25.92d | 0d | Labor [31.18 h]; Operator [31.18 h]; Boom Truck [16 h]; Electrician [15.59 h]; 13A SPUR OUTLET [4] | 1,692.8 | 0.000851056758844738 | Cons. | Z2 | Pump | Cons | PWPS | Pumpst | allElec | SUB.C | Pump |
| B3.2.32 11 23.01.247 |  | INDUSTRIAL SOCKET OUTLET, 400V, 3P, 60HZ, WITH GROUNDING | 2d | 2026-11-28 | 2026-11-30 | B3.2.32 11 23.01.245 FF | 25.92d | 0d | Labor [31.18 h]; Operator [31.18 h]; Boom Truck [16 h]; Electrician [15.59 h]; INDUSTRIAL SOCKET OUTLET, 400V, 3P, 60HZ, WITH GROUNDING [2] | 927.16 | 0.00046613054379164 | Cons. | Z2 | Pump | Cons | PWPS | Pumpst | allElec | SUB.C | Pump |

| ID | WBS | Activity | Duration | Start | Finish | Predecessors | Total float | Free float | Resources | Cost | Weight % | DMM2 Weekly Progress | DMM2 Zones | Networks & Stations | DMM2 Phases | JANCO | Networks Components | All Electrical Scope | Subcontractors works | Yellow Sheet |
| --- | --- | --- | --- | --- | --- | --- | --- | --- | --- | --- | --- | --- | --- | --- | --- | --- | --- | --- | --- | --- |
|  | 4 | **Grounding & Lightning System** |  | 2026-11-30 | 2026-12-02 |  |  |  |  |  |  |  |  |  |  |  |  |  |  |  |
| B3.2.32 11 23.01.249 |  | Install Grounding and Lightning System | 2d | 2026-11-30 | 2026-12-02 | B3.2.31 23 16.01, B3.2.32 11 23.01.19, B3.2.32 11 23.01.247 | 25.92d | 0d | Labor [31.18 h]; Operator [31.18 h]; Boom Truck [16 h]; Electrician [15.59 h]; Grounding and lightning system [1] | 39,030.71 | 0.0196226751195255 | Cons. | Z2 | Pump | Cons | PWPS | Pumpst | allElec | SUB.C | Pump |
|  | 6 | **Control & Instrumentation** |  | 2026-11-21 | 2026-11-25 |  |  |  |  |  |  |  |  |  |  |  |  |  |  |  |
| B3.2.32 11 23.01.219 |  | PLC Installation | 3d | 2026-11-21 | 2026-11-24 | B3.2.32 11 23.01.147, B3.2.32 11 23.01.155, B3.2.32 11 23.01.161, B3.2.32 11 23.01.169, B3.2.32 11 23.01.179, B3.2.32 11 23.01.185, B3.2.32 11 23.01.199, B3.2.32 11 23.01.203, B3.2.32 11 23.01.209, B3.2.32 11 23.01.213, B3.2.32 11 23.01.217, B3.2.32 11 23.01.157, B3.2.32 11 23.01.163, B3.2.32 11 23.01.171, B3.2.32 11 23.01.181, B3.2.32 11 23.01.193, B3.2.32 11 23.01.165, B3.2.32 11 23.01.187, B3.2.32 11 23.01.189, B3.2.32 11 23.01.195, B3.2.32 11 23.01.145, B3.2.32 11 23.01.153, B3.2.32 11 23.01.159, B3.2.32 11 23.01.167, B3.2.32 11 23.01.175, B3.2.32 11 23.01.177, B3.2.32 11 23.01.183, B3.2.32 11 23.01.191, B3.2.32 11 23.01.201, B3.2.32 11 23.01.205, B3.2. 22 05 23 .11, DMM2-Proc-Delv-3868_R, B3.2. 22 05 23 .12, B3.2.32 11 23.01.197 | 29.92d | 0d | Labor [62.37 h]; Plumber Helper [31.18 h]; Plumber [31.18 h]; Electrician [31.18 h]; MEP Specialist [31.18 h]; Testing and commissioning of PLC system, serving the pumping station and all related utilities [1] | 845,192.65 | 0.161470125959353 | Cons. | Z2 | Pump | Cons | PWPS | Pumpst | allElec | SUB.C | Pump |
| B3.2.32 11 23.01.223 |  | Data Cabinet including all devices 12U | 2d | 2026-11-21 | 2026-11-23 | B3.2.32 11 23.01.147, B3.2.32 11 23.01.155, B3.2.32 11 23.01.161, B3.2.32 11 23.01.169, B3.2.32 11 23.01.179, B3.2.32 11 23.01.185, B3.2.32 11 23.01.199, B3.2.32 11 23.01.203, B3.2.32 11 23.01.209, B3.2.32 11 23.01.213, B3.2.32 11 23.01.217, B3.2.32 11 23.01.157, B3.2.32 11 23.01.163, B3.2.32 11 23.01.171, B3.2.32 11 23.01.181, B3.2.32 11 23.01.193, B3.2.32 11 23.01.165, B3.2.32 11 23.01.187, B3.2.32 11 23.01.189, B3.2.32 11 23.01.195, B3.2.32 11 23.01.145, B3.2.32 11 23.01.153, B3.2.32 11 23.01.159, B3.2.32 11 23.01.167, B3.2.32 11 23.01.175, B3.2.32 11 23.01.177, B3.2.32 11 23.01.183, B3.2.32 11 23.01.191, B3.2.32 11 23.01.201, B3.2.32 11 23.01.205, B3.2.32 11 23.01.219 SS | 29.92d | 0d | Labor [46.78 h]; Plumber Helper [23.39 h]; Plumber [23.39 h]; Electrician [23.39 h]; MEP Specialist [23.39 h]; Pump St. Data Cabinet including all devices 12U [1] | 10,082.98 | 0.0050692123975623 | Cons. | Z2 | Pump | Cons | PWPS | Pumpst | allElec | SUB.C | Pump |
| B3.2.32 11 23.01.227 |  | Data/ voice RJ45 outlet include CAT6A cable | 2d | 2026-11-21 | 2026-11-23 | B3.2.32 11 23.01.147, B3.2.32 11 23.01.155, B3.2.32 11 23.01.161, B3.2.32 11 23.01.169, B3.2.32 11 23.01.179, B3.2.32 11 23.01.185, B3.2.32 11 23.01.199, B3.2.32 11 23.01.203, B3.2.32 11 23.01.209, B3.2.32 11 23.01.213, B3.2.32 11 23.01.217, B3.2.32 11 23.01.157, B3.2.32 11 23.01.163, B3.2.32 11 23.01.171, B3.2.32 11 23.01.181, B3.2.32 11 23.01.193, B3.2.32 11 23.01.165, B3.2.32 11 23.01.187, B3.2.32 11 23.01.189, B3.2.32 11 23.01.195, B3.2.32 11 23.01.145, B3.2.32 11 23.01.153, B3.2.32 11 23.01.159, B3.2.32 11 23.01.167, B3.2.32 11 23.01.175, B3.2.32 11 23.01.177, B3.2.32 11 23.01.183, B3.2.32 11 23.01.191, B3.2.32 11 23.01.201, B3.2.32 11 23.01.205, B3.2.32 11 23.01.223 FF | 29.92d | 0d | Labor [31.18 h]; Plumber Helper [15.59 h]; Plumber [15.59 h]; Electrician [15.59 h]; MEP Specialist [15.59 h]; Pump St. Data/ voice RJ45 outlet include CAT6A cable [2] | 1,622.54 | 0.000815733479144579 | Cons. | Z2 | Pump | Cons | PWPS | Pumpst | allElec | SUB.C | Pump |
| B3.2.32 11 23.01.231 |  | Instrumentation for Process Systems (Field Instruments) | 2d | 2026-11-23 | 2026-11-25 | B3.2.32 11 23.01.147, B3.2.32 11 23.01.155, B3.2.32 11 23.01.161, B3.2.32 11 23.01.169, B3.2.32 11 23.01.179, B3.2.32 11 23.01.185, B3.2.32 11 23.01.199, B3.2.32 11 23.01.203, B3.2.32 11 23.01.209, B3.2.32 11 23.01.213, B3.2.32 11 23.01.217, B3.2.32 11 23.01.157, B3.2.32 11 23.01.163, B3.2.32 11 23.01.171, B3.2.32 11 23.01.181, B3.2.32 11 23.01.193, B3.2.32 11 23.01.165, B3.2.32 11 23.01.187, B3.2.32 11 23.01.189, B3.2.32 11 23.01.195, B3.2.32 11 23.01.145, B3.2.32 11 23.01.153, B3.2.32 11 23.01.159, B3.2.32 11 23.01.167, B3.2.32 11 23.01.175, B3.2.32 11 23.01.177, B3.2.32 11 23.01.183, B3.2.32 11 23.01.191, B3.2.32 11 23.01.201, B3.2.32 11 23.01.205, B3.2.32 11 23.01.227, B3.2. 22 05 23 .11, B3.2.32 11 23.01.270, B3.2.32 11 23.01.280, B3.2. 22 05 23 .12 | 29.92d | 0d | Labor [31.18 h]; Plumber Helper [15.59 h]; Plumber [15.59 h]; Electrician [15.59 h]; MEP Specialist [15.59 h]; Testing and commissioning of all field instruments [1] | 41,701.49 | 0.0127889321250418 | Cons. | Z2 | Pump | Cons | PWPS | Pumpst | allElec | SUB.C | Pump |
|  | 7 | **Control Cable Pulling & Termination** |  | 2026-11-25 | 2026-11-28 |  |  |  |  |  |  |  |  |  |  |  |  |  |  |  |
| B3.2.32 11 23.01.235 |  | Process Control Wiring | 2d | 2026-11-25 | 2026-11-28 | B3.2.32 11 23.01.219, B3.2.32 11 23.01.223, B3.2.32 11 23.01.227, B3.2.32 11 23.01.231, B3.2.32 11 23.01.173 | 29.92d | 13.96d | Labor [62.37 h]; Electrician [31.18 h]; MEP Specialist [31.18 h]; Testing and commissioning of all control, instrumentation [1] | 91,562.23 | 0.0280801272253693 | Cons. | Z2 | Pump | Cons | PWPS | Pumpst | allElec | SUB.C | Pump |
|  | 6 | **Final Fixtures** |  | 2026-10-26 | 2026-11-12 |  |  |  |  |  |  |  |  |  |  |  |  |  |  |  |
|  | 1 | **Door & Louver Installation** |  | 2026-10-26 | 2026-11-05 |  |  |  |  |  |  |  |  |  |  |  |  |  |  |  |
| B3.2.32 11 23.01.59 |  | Steel Door SD1 For chlorination size (2000x2300)mm | 2d | 2026-10-26 | 2026-10-28 | B3.2.32 11 23.01.43, B3.2.32 11 23.01.45 SS | 48.12d | 0d | Labor [31.18 h]; Welder [15.59 h]; Operator [31.18 h]; Boom Truck [16 h]; Welding Machine [16 h]; Steel Door SD1 For chlorination size (2000x2300)mm [2] | 25,590.25 | 0.0128654865601686 | Cons. | Z2 | Pump | Cons |  | Pumpst |  | SUB.C | Pump |
| B3.2.32 11 23.01.75 |  | Steel Door SD1 size (2000x2550)mm | 2d | 2026-10-28 | 2026-10-31 | B3.2.32 11 23.01.43, B3.2.32 11 23.01.45 SS, B3.2.32 11 23.01.59 | 48.12d | 1d | Labor [31.18 h]; Welder [15.59 h]; Operator [31.18 h]; Boom Truck [16 h]; Welding Machine [16 h]; Steel Door SD1 For potable water pump station size (2000x2550)mm [2] | 27,815.04 | 0.00699201848698503 | Cons. | Z2 | Pump | Cons |  | Pumpst |  | SUB.C | Pump |
| B3.2.32 11 23.01.95 |  | Steel Door SD2 size (900x2200)mm | 2d | 2026-10-29 | 2026-11-01 | B3.2.32 11 23.01.43, B3.2.32 11 23.01.45, B3.2.32 11 23.01.75 SS | 47.12d | 0d | Labor [31.18 h]; Welder [15.59 h]; Operator [31.18 h]; Boom Truck [16 h]; Welding Machine [16 h]; Steel Door SD2 For potable water pump station size (900x2200)mm [2] | 12,864.49 | 0.0064676191114649 | Cons. | Z2 | Pump | Cons |  | Pumpst |  | SUB.C | Pump |
| B3.2.32 11 23.01.107 |  | 90 mins fire rated Steel Door SD3 size (1000x2200)mm | 2d | 2026-11-01 | 2026-11-03 | B3.2.32 11 23.01.43, B3.2.32 11 23.01.45, B3.2.32 11 23.01.95 | 47.12d | 0d | Labor [31.18 h]; Welder [15.59 h]; Operator [31.18 h]; Boom Truck [16 h]; Welding Machine [16 h]; 90 mins fire rated Steel Door SD3 For potable water pump station size (1000x2200)mm [2] | 8,112.74 | 0.00407867745074131 | Cons. | Z2 | Pump | Cons |  | Pumpst |  | SUB.C | Pump |
| B3.2.32 11 23.01.119 |  | Sand trap louver 1500mm x 1500mm | 2d | 2026-11-01 | 2026-11-03 | B3.2.32 11 23.01.43, B3.2.32 11 23.01.45, B3.2.32 11 23.01.107 FF, DMM2-Proc-Delv-7304 | 47.12d | 0d | Labor [31.18 h]; Welder [15.59 h]; Operator [62.37 h]; Boom Truck [16 h]; Welding Machine [16 h]; Sand trap louver 1500mm x 1500mm [8] | 44,160.03 | 0.0222014404454412 | Cons. | Z2 | Pump | Cons |  | Pumpst |  | SUB.C | Pump |
| B3.2.32 11 23.01.131 |  | Louver 3400mm x 2800mm | 2d | 2026-11-03 | 2026-11-05 | B3.2.32 11 23.01.43, B3.2.32 11 23.01.45, B3.2.32 11 23.01.119, DMM2-Proc-Delv-7394 | 47.12d | 0d | Labor [31.18 h]; Welder [15.59 h]; Operator [31.18 h]; Boom Truck [16 h]; Welding Machine [16 h]; Louver 3400mm x 2800mm [2] | 38,087.74 | 0.0191485960836751 | Cons. | Z2 | Pump | Cons |  | Pumpst |  | SUB.C | Pump |
| B3.2.32 11 23.01.143 |  | Steel shutter Door SD4 size (3200x3000)mm | 2d | 2026-11-03 | 2026-11-05 | B3.2.32 11 23.01.43, B3.2.32 11 23.01.45, B3.2.32 11 23.01.131 FF, DMM2-Proc-Delv-7295 | 47.12d | 19.2d | Labor [46.78 h]; Welder [23.39 h]; Operator [46.78 h]; Boom Truck [24 h]; Welding Machine [24 h]; Steel shutter Door SD4 For potable water pump station size (3200x3000)mm [1] | 30,039.97 | 0.0151025823602624 | Cons. | Z2 | Pump | Cons |  | Pumpst |  | SUB.C | Pump |
|  | 7 | **Ladders** |  | 2026-10-26 | 2026-11-05 |  |  |  |  |  |  |  |  |  |  |  |  |  |  |  |
| B3.2.32 11 23.01.61 |  | 5m External Galvanized Steel Ladder | 2d | 2026-10-26 | 2026-10-27 | B3.2.32 11 23.01.43, DMM2-Proc-Delv-7294 | 34.32d | 0d | Labor [31.18 h]; Welder [15.59 h]; Operator [31.18 h]; Boom Truck [16 h]; Welding Machine [16 h]; external galvanized steel ladder for Potable water pump station length of 5m [1] | 5,215.33 | 0.00262200693261939 | Cons. | Z2 | Pump | Cons |  | Pumpst |  | SUB.C | Pump |
| B3.2.32 11 23.01.77 |  | 3m External Galvanized Steel Ladder | 2d | 2026-10-28 | 2026-10-29 | B3.2.32 11 23.01.43, B3.2.32 11 23.01.61, DMM2-Proc-Delv-7294 | 34.32d | 0d | Labor [31.18 h]; Welder [15.59 h]; Operator [31.18 h]; Boom Truck [16 h]; Welding Machine [16 h]; external galvanized steel ladder for Potable water pump station length of 3m [1] | 3,129.2 | 0.00157320315406979 | Cons. | Z2 | Pump | Cons |  | Pumpst |  | SUB.C | Pump |
| B3.2.32 11 23.01.97 |  | 4.3m External Galvanized Steel Ladder - Potable Water Tank | 2d | 2026-10-31 | 2026-11-01 | B3.2.32 11 23.01.43, B3.2.32 11 23.01.77, DMM2-Proc-Delv-7294 | 34.32d | 0d | Labor [31.18 h]; Welder [15.59 h]; Operator [31.18 h]; Boom Truck [16 h]; Welding Machine [16 h]; external galvanized steel ladder for Potable water tank length of 4.3m [2] | 9,387.6 | 0.00471961448971863 | Cons. | Z2 | Pump | Cons |  | Pumpst |  | SUB.C | Pump |
| B3.2.32 11 23.01.109 |  | 4.5m External Stainless Steel A36 Ladder | 2d | 2026-11-02 | 2026-11-03 | B3.2.32 11 23.01.43, B3.2.32 11 23.01.97 | 34.32d | 0d | Labor [31.18 h]; Welder [15.59 h]; Operator [31.18 h]; Boom Truck [16 h]; Welding Machine [16 h]; Stainless steel A36 ladder for Potable water tank length of 4.5m [2] | 9,387.6 | 0.00471961448971863 | Cons. | Z2 | Pump | Cons |  | Pumpst |  | SUB.C | Pump |
| B3.2.32 11 23.01.121 |  | 4.3m External Galvanized Steel Ladder - Chlorination | 2d | 2026-11-04 | 2026-11-05 | B3.2.32 11 23.01.43, B3.2.32 11 23.01.109, DMM2-Proc-Delv-7294 | 34.32d | 0d | Labor [31.18 h]; Welder [15.59 h]; Operator [31.18 h]; Boom Truck [16 h]; Welding Machine [16 h]; external galvanized steel ladder for chlorination length of 4.3m [1] | 4,693.8 | 0.00471961448971863 | Cons. | Z2 | Pump | Cons |  | Pumpst |  | SUB.C | Pump |

| ID | WBS | Activity | Duration | Start | Finish | Predecessors | Complete | Planned start | Planned finish | Total float | Free float | Resources | Cost | Actual cost | Weight % | DMM2 Weekly Progress | DMM2 Zones | Networks & Stations | DMM2 Phases | Networks Components | Subcontractors works | Yellow Sheet | Dmm2 Roads |
| --- | --- | --- | --- | --- | --- | --- | --- | --- | --- | --- | --- | --- | --- | --- | --- | --- | --- | --- | --- | --- | --- | --- | --- |
|  | 2 | **Handrails** |  | 2026-11-07 | 2026-11-08 |  |  |  |  |  |  |  |  |  |  |  |  |  |  |  |  |  |  |
| B3.2.32 11 23.01.133 |  | Handrail with approximate height 1.1m | 2d | 2026-11-07 | 2026-11-08 | B3.2.32 11 23.01.43, B3.2.32 11 23.01.121, DMM2-Proc-Delv-7296, DMM2-Proc-Delv-7298 |  |  |  | 34.32d | 0d | Labor [31.18 h]; Welder [15.59 h]; Operator [31.18 h]; Boom Truck [16 h]; Welding Machine [16 h]; handrail with approximate height 1.1m for potable water pump station [29] | 12,094.48 |  | 0.0060804958748876 | Cons. | Z2 | Pump | Cons | Pumpst | SUB.C | Pump |  |
|  | 6 | **Signage** |  | 2026-11-09 | 2026-11-12 |  |  |  |  |  |  |  |  |  |  |  |  |  |  |  |  |  |  |
| B3.2.32 11 23.01.141 |  | Aluminum exterior signage size (300x150)mm | 2d | 2026-11-09 | 2026-11-10 | B3.2.32 11 23.01.43, B3.2.32 11 23.01.133 |  |  |  | 34.32d | 0d | Labor [31.18 h]; Foreman [15.59 h]; Aluminum exterior signage For Potable water pump station & chlorination size (300x150)mm [5] | 2,028.21 |  | 0.00101967941770374 | Cons. | Z2 | Pump | Cons | Pumpst | SUB.C | Pump |  |
| B3.2.32 11 23.01.151 |  | Aluminum interior signage size (300x150)mm | 2d | 2026-11-11 | 2026-11-12 | B3.2.32 11 23.01.43, B3.2.32 11 23.01.141, B3.2.32 11 23.01.91 |  |  |  | 34.32d | 8.4d | Labor [31.18 h]; Foreman [15.59 h]; Aluminum interior signage For Potable water pump station size (300x150)mm [2] | 811.28 |  | 0.000407871767081498 | Cons. | Z2 | Pump | Cons | Pumpst | SUB.C | Pump |  |
|  | 5 | **Engineering Backfilling** |  | 2026-11-14 | 2026-11-16 |  |  |  |  |  |  |  |  |  |  |  |  |  |  |  |  |  |  |
| B3.2.32 11 23.01.135 |  | Backfilling around structures | 2d | 2026-11-14 | 2026-11-16 | B3.2.32 11 23.01.13, B3.2.32 11 23.01.17, B3.2.32 11 23.01.23, B3.2.32 11 23.01.37, B3.2.32 11 23.01.57, B3.2.32 11 23.01.87, B3.2.32 11 23.01.105, B3.2.32 11 23.01.117, B3.2.32 11 23.01.129, B3.2.32 11 23.01.69 |  |  |  | 38.12d | 10.2d | Labor [77.96 h]; Operator [77.96 h]; JCB [40 h]; Water Tanker [40 h]; Roller Compactor [40 h]; Fill [663] | 22,120.39 |  | 0.00754820177572252 | Cons. | Z2 | Pump | Cons | Pumpst | SUB.C | Pump |  |
|  | Demolishion | **Demolishing and Site Clearing** |  | 2026-03-06 | 2026-06-22 |  |  |  |  |  |  |  |  |  |  |  |  |  |  |  |  |  |  |
| B1.1.02 41 00.60 |  | Removal of culvert's wing walls | 4.5d | 2026-03-06 A | 2026-03-12 A | B1.1.02 41 00.50 | 100% | 2026-03-07 | 2026-03-12 |  |  | Removal of culvert's wing walls [3]; Labor [85.05 h]; Foreman [42.52 h]; Operator [85.05 h]; JCB [48 h] | 5,215.33 | 5,215.33 | 0.0026220069326194 | Demolish | Z2 |  | Cons |  |  |  |  |
| B1.1.02 41 00.90 |  | Dismantling and relocation of existing inlets | 26.25d | 2026-03-07 A | 2026-04-13 A | B1.1.02 41 00.80 | 100% |  |  |  |  | Dismantling and relocation of existing inlets [11]; Labor [85.05 h]; Foreman [42.52 h]; Operator [85.05 h]; JCB [48 h] | 101,988.48 | 101,988.48 | 0.0326294196059304 | Demolish | Z2 |  | Cons |  |  |  |  |
| B1.1.02 41 00.50 |  | Removal of riprap | 6d | 2026-04-22 A | 2026-04-28 A | B1.1.02 41 00.40 | 100% |  |  |  |  | Removal of riprap [470]; Labor [85.05 h]; Foreman [42.52 h]; Operator [85.05 h]; JCB [48 h] | 18,982.36 | 18,982.36 | 0.009543398970241 | Demolish | Z2 |  | Cons |  |  |  |  |
| B1.1.02 41 00.20 |  | Removal of curbstone | 4d | 2026-05-16 A | 2026-05-19 A | B1.1.02 41 00.01 | 100% |  |  |  |  | Removal of curbstone [2131]; Labor [56.7 h]; Foreman [28.35 h]; Operator [56.7 h]; JCB [32 h] | 16,839.16 | 16,839.16 | 0.00403232884334652 | Demolish | Z2 |  | Cons |  |  |  |  |
| B1.1.02 41 00.30 |  | Removal of bituminous concrete wearing course | 4d | 2026-05-20 A | 2026-05-24 A | B1.1.02 41 00.20 | 100% |  |  |  |  | Removal of bituminous concrete wearing course only [2500]; Labor [56.7 h]; Foreman [28.35 h]; Operator [56.7 h]; JCB [32 h] | 28,535 | 28,535 | 0.00401687930754824 | Demolish | Z2 |  | Cons |  |  |  |  |
| B1.1.02 41 00.40 |  | Removal of concrete protection | 6d | 2026-05-21 A | 2026-06-01 A | B1.1.02 41 00.30 | 100% |  |  |  |  | Removal of concrete protection [1780]; Labor [85.05 h]; Foreman [42.52 h]; Operator [85.05 h]; JCB [48 h] | 51,573.72 | 51,573.72 | 0.00633651675383021 | Demolish | Z2 |  | Cons |  |  |  |  |
| B1.1.02 41 00.100 |  | Dismantling and level adjustment for storm manholes | 5d | 2026-06-17 A | 2026-06-22 A | B1.1.02 41 00.90 | 100% |  |  |  |  | Dismantling and level adjustment for storm manholes [6]; Labor [70.87 h]; Foreman [35.44 h]; Operator [70.87 h]; JCB [40 h] | 3,961.55 | 3,961.55 | 0.0019916658720503 | Demolish | Z2 |  | Cons |  |  |  |  |
| B1.1.02 41 00.70 |  | Selective Tree Removal | 3d | 2026-06-17 A | 2026-06-20 A | B1.1.02 41 00.60 | 100% |  |  |  |  | Selective Tree Removal [2]; Labor [42.52 h]; Foreman [21.26 h]; Operator [42.52 h]; JCB [24 h] | 3,245.09 | 3,245.09 | 0.00244720647044477 | Demolish | Z2 |  | Cons |  |  |  |  |
| B1.1.02 41 00.80 |  | Removal of traffic signs | 2d | 2026-06-21 A | 2026-06-22 A | B1.1.02 41 00.70 | 100% |  |  |  |  | Removal of traffic signs [2]; Labor [56.7 h]; Foreman [28.35 h]; Operator [56.7 h]; JCB [32 h] | 93.07 | 93.07 | 4.67900227033094E-005 | Demolish | Z2 |  | Cons |  |  |  |  |
|  | Zone 03 | **Zone 03** |  | 2025-09-22 | 2026-12-30 |  |  |  |  |  |  |  |  |  |  |  |  |  |  |  |  |  |  |
|  | Dewatering | **Earthworks & Site Grading** |  | 2025-09-22 | 2026-04-04 |  |  |  |  |  |  |  |  |  |  |  |  |  |  |  |  |  |  |
| B1.1.31 23 19.2 |  | Dewatering | 27d | 2025-09-22 A | 2025-10-23 A | B1.1.31 23 19.02 | 100% |  |  |  |  | Surface Dewatering [0.48]; Labor [283.5 h]; Foreman [141.75 h]; Surveyor [141.75 h]; Surveyor Helper [141.75 h]; Dewatering pump [160 h] | 1,390,755.56 | 1,390,755.56 | 0.699201848698509 | Earth | Z3 |  | Cons |  |  |  | Z3 |
| B1.1.31 23 16.2 |  | Excavation (all types of soil) | 93.08d | 2025-10-19 A | 2026-02-04 A | B1.1.31 23 19.2 | 100% |  |  |  |  | Excavation (all types of soil) [194639]; Labor [212.62 h]; Foreman [106.31 h]; Operator [212.62 h]; Surveyor [106.31 h]; Surveyor Helper [106.31 h]; Excavator (With Bucket) [120 h]; Water Tanker [120 h]; Dump Truck [120 h]; Plate Compactor [120 h] | 2,905,187.44 | 2,905,187.44 | 1.44047955468652 | Earth | Z3 |  | Cons |  |  |  | Z3 |
| B1.1.31 23 23.2 |  | Engineering Backfiling - Road 02 | 95.6d | 2025-10-20 A | 2026-02-09 A | B1.1.31 23 16.2 | 100% |  |  |  |  | Fill [139456]; Labor [297.67 h]; Foreman [148.84 h]; Operator [297.67 h]; Surveyor [148.84 h]; Surveyor Helper [148.84 h]; Loader [168 h]; Water Tanker [168 h]; Dump Truck [168 h]; Plate Compactor [168 h]; Roller Compactor [168 h] | 3,918,161.3 | 3,918,161.3 | 3.87850572923841 | Earth | Z3 |  | Cons |  |  |  | Rd 02 |
| B1.1.31 23 23.142 |  | Engineering Backfiling - Customs Road 04 & Road 05 | 90.6d | 2025-10-29 A | 2026-02-12 A | B1.1.31 23 23.2 | 100% |  |  |  |  | Fill [41556.1]; Labor [297.67 h]; Foreman [148.84 h]; Operator [297.67 h]; Surveyor [148.84 h]; Surveyor Helper [148.84 h]; Loader [168 h]; Water Tanker [168 h]; Dump Truck [168 h]; Plate Compactor [168 h]; Roller Compactor [168 h] | 1,167,558.69 | 1,167,558.69 | 1.15546810773272 | Earth | Z3 |  | Cons |  |  |  | Cust. Rd 04&05 |
| B1.1.31 23 23.152 |  | Engineering Backfiling - Customs Road 06 | 89.6d | 2025-11-03 A | 2026-02-16 A | B1.1.31 23 23.142 | 100% |  |  |  |  | Fill [26929.8]; Labor [297.67 h]; Foreman [148.84 h]; Operator [297.67 h]; Surveyor [148.84 h]; Surveyor Helper [148.84 h]; Loader [168 h]; Water Tanker [168 h]; Dump Truck [168 h]; Plate Compactor [168 h]; Roller Compactor [168 h] | 756,620.71 | 756,620.71 | 0.748785569199661 | Earth | Z3 |  | Cons |  |  |  | Cust. Rd 06 |
| B1.1.31 23 23.122 |  | Engineering Backfiling - Customs Road 01 | 89.1d | 2025-11-08 A | 2026-02-21 A | B1.1.31 23 23.132 | 100% |  |  |  |  | Fill [84007.9]; Labor [297.67 h]; Foreman [148.84 h]; Operator [297.67 h]; Surveyor [148.84 h]; Surveyor Helper [148.84 h]; Loader [168 h]; Water Tanker [168 h]; Dump Truck [168 h]; Plate Compactor [168 h]; Roller Compactor [168 h] | 2,360,287.34 | 2,360,287.34 | 2.33584553458169 | Earth | Z3 |  | Cons |  |  |  | Cust. Rd 01 |
| B1.1.31 23 23.132 |  | Engineering Backfiling - Customs Road 02 | 85.6d | 2025-11-13 A | 2026-02-24 A | B1.1.31 23 23.152 | 100% |  |  |  |  | Fill [68545.3]; Labor [297.67 h]; Foreman [148.84 h]; Operator [297.67 h]; Surveyor [148.84 h]; Surveyor Helper [148.84 h]; Loader [168 h]; Water Tanker [168 h]; Dump Truck [168 h]; Plate Compactor [168 h]; Roller Compactor [168 h] | 1,925,849.53 | 1,925,849.53 | 1.90590651464807 | Earth | Z3 |  | Cons |  |  |  | Cust. Rd 02 |
| B1.1.31 23 23.162 |  | Engineering Backfiling - Sewerage Lift Station | 18.1d | 2026-03-05 A | 2026-04-04 A | B1.1.31 23 23.122, B1.1.31 23 23.72 | 100% |  |  |  |  | Fill [21860.4]; Labor [297.67 h]; Foreman [148.84 h]; Operator [297.67 h]; Surveyor [148.84 h]; Surveyor Helper [148.84 h]; Loader [168 h]; Water Tanker [168 h]; Dump Truck [168 h]; Plate Compactor [168 h]; Roller Compactor [168 h] | 614,189.3 | 614,189.3 | 0.607829106523418 | Earth | Z3 |  | Cons |  |  |  |  |

| ID | WBS | Activity | Duration | Start | Finish | Predecessors | Complete | Remaining | Planned start | Planned finish | Total float | Resources | Cost | Actual cost | Weight % | DMM2 Weekly Progress | DMM2 Zones | Networks & Stations | DMM2 Phases | UNASCO | Networks Components | Subcontractors works | Dmm2 Roads | Yellow Sheet |
| --- | --- | --- | --- | --- | --- | --- | --- | --- | --- | --- | --- | --- | --- | --- | --- | --- | --- | --- | --- | --- | --- | --- | --- | --- |
|  | Road 02 | **Road 02** |  | 2025-11-28 | 2026-12-19 |  |  |  |  |  |  |  |  |  |  |  |  |  |  |  |  |  |  |  |
|  | Wet Networks | **Wet Networks** |  | 2026-02-01 | 2026-12-14 |  |  |  |  |  |  |  |  |  |  |  |  |  |  |  |  |  |  |  |
|  | Sewerage Network | **Sewerage Network** |  | 2026-02-04 | 2026-10-24 |  |  |  |  |  |  |  |  |  |  |  |  |  |  |  |  |  |  |  |
|  | GRP | **GRP Pipes** |  | 2026-02-04 | 2026-10-08 |  |  |  |  |  |  |  |  |  |  |  |  |  |  |  |  |  |  |  |
|  | 200 | **?200** |  | 2026-02-04 | 2026-10-08 |  |  |  |  |  |  |  |  |  |  |  |  |  |  |  |  |  |  |  |
|  | 3 | **Depth From 4.5m to 5.5m** |  | 2026-02-04 | 2026-10-08 |  |  |  |  |  |  |  |  |  |  |  |  |  |  |  |  |  |  |  |
| B5.33 31 00.02.05.1 |  | Excavation | 30.84d | 2026-02-04 A | 2026-03-22 A | B1.1.31 23 23.2 | 100% |  | 2026-02-04 | 2026-03-24 |  | Labor [28.35 h]; Foreman [14.17 h]; Operator [28.35 h]; Surveyor [14.17 h]; Surveyor Helper [14.17 h]; Excavator (With Bucket) [16 h]; Water Tanker [16 h]; Dump Truck [16 h]; Plate Compactor [16 h]; Sew Dia. 200mm Depth: 4.51m -5.5m [27.78] | 14,415.02 | 14,415.02 | 0.00414613354616581 | Cons. | Z3 | Sew | Cons | CS.UNSC | GRPs | SUB.C | Rd 02 | Sew |
| B5.33 31 00.02.05.2 |  | Sand Bedding | 28.99d | 2026-02-07 A | 2026-03-25 A | B5.33 31 00.02.05.1 | 100% |  |  |  |  | Labor [28.35 h]; Foreman [14.17 h]; Operator [56.7 h]; Surveyor [14.17 h]; Surveyor Helper [14.17 h]; Loader [16 h]; Water Tanker [16 h]; Dump Truck [16 h]; Plate Compactor [16 h]; Sew Dia. 200mm Depth: 4.51m -5.5m [6.94] | 3,602.47 | 3,602.47 | 0.00103616332820995 | Cons. | Z3 | Sew | Cons | CS.UNSC | GRPs | SUB.C | Rd 02 | Sew |
| B5.33 31 00.02.05.3 |  | Pipe Laying | 29.99d | 2026-02-08 A | 2026-03-28 A | B5.33 31 00.02.05.2 | 100% |  |  |  |  | Labor [28.35 h]; Foreman [14.17 h]; Plumber Helper [14.17 h]; Plumber [14.17 h]; Operator [14.17 h]; Surveyor [14.17 h]; Surveyor Helper [14.17 h]; Mobile Crane [16 h]; Sew Dia. 200mm Depth: 4.51m -5.5m [62.49] | 32,427.36 | 32,427.36 | 0.00932695018721553 | Cons. | Z3 | Sew | Cons | CS.UNSC | GRPs | SUB.C | Rd 02 | Sew |
| B5.33 31 00.02.05.4 |  | Embedment & Test | 35.65d | 2026-04-02 A | 2026-05-13 A | B5.33 31 00.02.05.3 | 100% |  |  |  |  | Labor [56.7 h]; Foreman [28.35 h]; Plumber Helper [28.35 h]; Plumber [28.35 h]; Operator [56.7 h]; Surveyor [28.35 h]; Surveyor Helper [28.35 h]; Loader [32 h]; Water Tanker [32 h]; Dump Truck [32 h]; Plate Compactor [32 h]; Roller Compactor [32 h]; Sew Dia. 200mm Depth: 4.51m -5.5m [27.78] | 14,415.02 | 14,415.02 | 0.00414613354616581 | Cons. | Z3 | Sew | Cons | CS.UNSC | GRPs | SUB.C | Rd 02 | Sew |
| B5.33 31 00.02.05.5 |  | Backfilling & Warrning Tape (8.86% Completed) | 136.85d | 2026-04-05 A | 2026-09-15 A | B5.33 31 00.02.05.4 | 100% |  |  |  |  | Labor [6.91 h]; Foreman [3.45 h]; Operator [13.81 h]; Surveyor [3.45 h]; Surveyor Helper [3.45 h]; Loader [3.54 h]; Water Tanker [3.54 h]; Dump Truck [3.54 h]; Plate Compactor [3.54 h]; Roller Compactor [3.54 h]; Sew Dia. 200mm Depth: 4.51m -5.5m [1.23] | 638.3 | 638.3 | 0.00207232665641989 | Cons. | Z3 | Sew | Cons | CS.UNSC | GRPs | SUB.C | Rd 02 | Sew |
| B5.33 31 00.02.05.5_R |  | Backfilling & Warrning Tape(Rem) | 4.56d | 2026-09-24 A | 2026-10-08 A | B5.33 31 00.02.05.4, B5.33 31 00.02.05.5 | 100% |  | 2026-09-16 | 2026-09-21 |  | Labor [71.06 h]; Foreman [35.53 h]; Operator [142.11 h]; Surveyor [35.53 h]; Surveyor Helper [35.53 h]; Loader [36.46 h]; Water Tanker [36.46 h]; Dump Truck [36.46 h]; Plate Compactor [36.46 h]; Roller Compactor [36.46 h]; Sew Dia. 200mm Depth: 4.51m -5.5m [12.65] | 6,566.64 | 6,566.64 | 0.00207232665641989 | Cons. | Z3 | Sew | Cons | CS.UNSC | GRPs | SUB.C | Rd 02 | Sew |
|  | Manholes | **Manholes ?1200** |  | 2026-02-07 | 2026-10-24 |  |  |  |  |  |  |  |  |  |  |  |  |  |  |  |  |  |  |  |
|  | 4 | **Depth From 4.5m to 5.5m** |  | 2026-02-07 | 2026-10-22 |  |  |  |  |  |  |  |  |  |  |  |  |  |  |  |  |  |  |  |
| B6.33 05 39.01.577 |  | Excavation & Compaction | 1d | 2026-02-07 A | 2026-02-08 A | B5.33 31 00.02.05.1 | 100% |  |  |  |  | Labor [28.35 h]; Foreman [14.17 h]; Operator [28.35 h]; Surveyor [14.17 h]; Surveyor Helper [14.17 h]; Excavator (With Bucket) [16 h]; Water Tanker [16 h]; Dump Truck [16 h]; Plate Compactor [16 h]; MH depth 4.51 -5.5m [1.42] | 43,831.91 | 43,831.91 | 0.008371151633112 | Cons. | Z3 | Sew | Cons | CS.UNSC | Manhole | SUB.C | Rd 02 | Sew |
| B6.33 05 39.01.587 |  | Blinding Conc, & RC Base | 32.57d | 2026-04-13 A | 2026-05-20 A | B6.33 05 39.01.577 | 100% |  |  |  |  | Labor [42.52 h]; Foreman [21.26 h]; Laboratory Officer [21.26 h]; Carpenter [21.26 h]; Steelfixer [21.26 h]; Mason [21.26 h]; MH depth 4.51 -5.5m [0.96] | 29,528.87 | 29,528.87 | 0.00563951267914914 | Cons. | Z3 | Sew | Cons | CS.UNSC | Manhole | SUB.C | Rd 02 | Sew |
| B6.33 05 39.01.597 |  | Manhole Installation | 28.38d | 2026-04-20 A | 2026-05-23 A | B6.33 05 39.01.587 | 100% |  |  |  |  | Labor [28.35 h]; Operator [28.35 h]; Surveyor [14.17 h]; Surveyor Helper [14.17 h]; Boom Truck [16 h]; Mobile Crane [16 h]; MH depth 4.51 -5.5m [4.27] | 131,957.13 | 131,957.13 | 0.0252015722849475 | Cons. | Z3 | Sew | Cons | CS.UNSC | Manhole | SUB.C | Rd 02 | Sew |
| B6.33 05 39.01.607 |  | Test, Internal Finishing, Benching & Cover (40.32% Completed) | 88d | 2026-06-06 A | 2026-09-15 A | B6.33 05 39.01.597 | 100% |  |  |  |  | Labor [25.15 h]; Foreman [12.57 h]; Plumber Helper [12.57 h]; Plumber [12.57 h]; Mason [12.57 h]; MH depth 4.51 -5.5m [0.39] | 11,906.04 | 11,906.04 | 0.00563951267914914 | Cons. | Z3 | Sew | Cons | CS.UNSC | Manhole | SUB.C | Rd 02 | Sew |
| B6.33 05 39.01.617 |  | Backfilling (40.32% Completed) | 75.33d | 2026-06-20 A | 2026-09-15 A | B6.33 05 39.01.607 SS, B5.33 31 00.02.05.5 SS | 100% |  |  |  |  | Labor [31.43 h]; Foreman [15.72 h]; Operator [31.43 h]; Surveyor [15.72 h]; Surveyor Helper [15.72 h]; Loader [16.13 h]; Water Tanker [16.13 h]; Dump Truck [16.13 h]; Plate Compactor [16.13 h]; MH depth 4.51 -5.5m [0.76] | 23,626.05 | 23,626.05 | 0.0111909079726865 | Cons. | Z3 | Sew | Cons | CS.UNSC | Manhole | SUB.C | Rd 02 | Sew |
| B6.33 05 39.01.607_R |  | Test, Internal Finishing, Benching & Cover(Rem) | 2.56d | 2026-09-22 A | 2026-10-22 | B6.33 05 39.01.597, B6.33 05 39.01.607 | 40% | 1.54d | 2026-09-16 | 2026-09-19 | 111.79d | Labor [37.22 h]; Foreman [18.61 h]; Plumber Helper [18.61 h]; Plumber [18.61 h]; Mason [18.61 h]; MH depth 4.51 -5.5m [0.57] | 17,622.83 | 14,852.64 | 0.00563951267914914 | Cons. | Z3 | Sew | Cons | CS.UNSC | Manhole | SUB.C | Rd 02 | Sew |
| B6.33 05 39.01.617_R |  | Backfilling(Rem) | 3.08d | 2026-09-26 A | 2026-10-22 | B6.33 05 39.01.607_R SS, B5.33 31 00.02.05.5_R SS, B6.33 05 39.01.617 | 40% | 1.85d | 2026-09-16 | 2026-09-20 | 111.47d | Labor [46.53 h]; Foreman [23.26 h]; Operator [46.53 h]; Surveyor [23.26 h]; Surveyor Helper [23.26 h]; Loader [23.87 h]; Water Tanker [23.87 h]; Dump Truck [23.87 h]; Plate Compactor [23.87 h]; MH depth 4.51 -5.5m [1.13] | 34,970.3 | 27,760.2 | 0.0111909079726865 | Cons. | Z3 | Sew | Cons | CS.UNSC | Manhole | SUB.C | Rd 02 | Sew |
|  | 1 | **Depth From 5.5m to 6.5m** |  | 2026-03-02 | 2026-10-24 |  |  |  |  |  |  |  |  |  |  |  |  |  |  |  |  |  |  |  |
| B6.33 05 39.01.627 |  | Excavation & Compaction | 2.5d | 2026-03-02 A | 2026-03-05 A | B6.33 05 39.01.577 | 100% |  |  |  |  | Labor [28.35 h]; Foreman [14.17 h]; Operator [28.35 h]; Surveyor [14.17 h]; Surveyor Helper [14.17 h]; Excavator (With Bucket) [16 h]; Water Tanker [16 h]; Dump Truck [16 h]; Plate Compactor [16 h]; MH depth 6.0-5.51 m [0.45] | 19,017.79 | 19,017.79 | 0.00361625409226495 | Cons. | Z3 | Sew | Cons | CS.UNSC | Manhole | SUB.C | Rd 02 | Sew |
| B6.33 05 39.01.637 |  | Blinding Conc, & RC Base | 3d | 2026-04-29 A | 2026-05-02 A | B6.33 05 39.01.627 | 100% |  |  |  |  | Labor [42.52 h]; Foreman [21.26 h]; Laboratory Officer [21.26 h]; Carpenter [21.26 h]; Steelfixer [21.26 h]; Mason [21.26 h]; MH depth 6.0-5.51 m [0.3] | 12,678.53 | 12,678.53 | 0.00241083606150998 | Cons. | Z3 | Sew | Cons | CS.UNSC | Manhole | SUB.C | Rd 02 | Sew |
| B6.33 05 39.01.647 |  | Manhole Installation | 7.5d | 2026-05-03 A | 2026-05-11 A | B6.33 05 39.01.637 | 100% |  |  |  |  | Labor [28.35 h]; Operator [28.35 h]; Surveyor [14.17 h]; Surveyor Helper [14.17 h]; Boom Truck [16 h]; Mobile Crane [16 h]; MH depth 6.0-5.51 m [1.35] | 57,053.53 | 57,053.53 | 0.0108487900792924 | Cons. | Z3 | Sew | Cons | CS.UNSC | Manhole | SUB.C | Rd 02 | Sew |
| B6.33 05 39.01.657 |  | Test, Internal Finishing, Benching & Cover (24.00% Completed) | 88d | 2026-06-06 A | 2026-09-15 A | B6.33 05 39.01.647 | 100% |  |  |  |  | Labor [14.97 h]; Foreman [7.48 h]; Plumber Helper [7.48 h]; Plumber [7.48 h]; Mason [7.48 h]; MH depth 6.0-5.51 m [0.07] | 3,042.85 | 3,042.85 | 0.00241083606150998 | Cons. | Z3 | Sew | Cons | CS.UNSC | Manhole | SUB.C | Rd 02 | Sew |
| B6.33 05 39.01.667 |  | Backfilling (38.40% Completed) | 74.8d | 2026-06-21 A | 2026-09-15 A | B6.33 05 39.01.1467, B6.33 05 39.01.657 SS, B6.33 05 39.01.617 SS | 100% |  |  |  |  | Labor [29.94 h]; Foreman [14.97 h]; Operator [29.94 h]; Surveyor [14.97 h]; Surveyor Helper [14.97 h]; Loader [15.36 h]; Water Tanker [15.36 h]; Dump Truck [15.36 h]; Plate Compactor [15.36 h]; MH depth 6.0-5.51 m [0.23] | 9,737.11 | 9,737.11 | 0.00482167212301994 | Cons. | Z3 | Sew | Cons | CS.UNSC | Manhole | SUB.C | Rd 02 | Sew |
| B6.33 05 39.01.657_R |  | Test, Internal Finishing, Benching & Cover(Rem) | 3.04d | 2026-09-28 A | 2026-10-22 | B6.33 05 39.01.647, B6.33 05 39.01.657 | 40% | 1.82d | 2026-09-16 | 2026-09-20 | 111.5d | Labor [47.4 h]; Foreman [23.7 h]; Plumber Helper [23.7 h]; Plumber [23.7 h]; Mason [23.7 h]; MH depth 6.0-5.51 m [0.23] | 9,635.68 | 7,444.79 | 0.00241083606150998 | Cons. | Z3 | Sew | Cons | CS.UNSC | Manhole | SUB.C | Rd 02 | Sew |
| B6.33 05 39.01.667_R |  | Backfilling(Rem) | 3.08d | 2026-09-30 A | 2026-10-22 | B6.33 05 39.01.1467, B6.33 05 39.01.657_R SS, B6.33 05 39.01.617_R SS, B6.33 05 39.01.667 | 40% | 1.85d | 2026-09-16 | 2026-09-20 | 111.47d | Labor [48.02 h]; Foreman [24.01 h]; Operator [48.02 h]; Surveyor [24.01 h]; Surveyor Helper [24.01 h]; Loader [24.64 h]; Water Tanker [24.64 h]; Dump Truck [24.64 h]; Plate Compactor [24.64 h]; MH depth 6.0-5.51 m [0.37] | 15,619.95 | 11,559.33 | 0.00482167212301994 | Cons. | Z3 | Sew | Cons | CS.UNSC | Manhole | SUB.C | Rd 02 | Sew |

| ID | WBS | Activity | Duration | Start | Finish | Predecessors | Complete | Remaining | Planned start | Planned finish | Total float | Resources | Cost | Actual cost | Weight % | DMM2 Weekly Progress | DMM2 Zones | Networks & Stations | DMM2 Phases | UNASCO | Networks Components | Subcontractors works | Dmm2 Roads | Yellow Sheet |
| --- | --- | --- | --- | --- | --- | --- | --- | --- | --- | --- | --- | --- | --- | --- | --- | --- | --- | --- | --- | --- | --- | --- | --- | --- |
|  | 1 | **Depth From 5.5m to 6.5m Backdrop** |  | 2026-05-20 | 2026-10-24 |  |  |  |  |  |  |  |  |  |  |  |  |  |  |  |  |  |  |  |
| B6.33 05 39.01.677 |  | Excavation & Compaction | 2d | 2026-05-20 A | 2026-05-21 A | B6.33 05 39.01.627 | 100% |  |  |  |  | Labor [28.35 h]; Foreman [14.17 h]; Operator [28.35 h]; Surveyor [14.17 h]; Surveyor Helper [14.17 h]; Excavator (With Bucket) [16 h]; Water Tanker [16 h]; Dump Truck [16 h]; Plate Compactor [16 h]; MH depth 6.0- 5.51 m with back drop [0.15] | 6,990.26 | 6,990.26 | 0.00132596502561648 | Cons. | Z3 | Sew | Cons | CS.UNSC | Manhole | SUB.C | Rd 02 | Sew |
| B6.33 05 39.01.687 |  | Blinding Conc, & RC Base (36.00% Completed) | 96d | 2026-05-23 A | 2026-09-15 A | B6.33 05 39.01.677 | 100% |  |  |  |  | Labor [16.84 h]; Foreman [8.42 h]; Laboratory Officer [8.42 h]; Carpenter [8.42 h]; Steelfixer [8.42 h]; Mason [8.42 h]; MH depth 6.0- 5.51 m with back drop [0.04] | 1,761.55 | 1,761.55 | 0.000928175517931532 | Cons. | Z3 | Sew | Cons | CS.UNSC | Manhole | SUB.C | Rd 02 | Sew |
| B6.33 05 39.01.697 |  | Manhole Installation (36.00% Completed) | 93d | 2026-05-31 A | 2026-09-15 A | B6.33 05 39.01.687 SS | 100% |  |  |  |  | Labor [11.23 h]; Operator [11.23 h]; Surveyor [5.61 h]; Surveyor Helper [5.61 h]; Boom Truck [5.76 h]; Mobile Crane [5.76 h]; MH depth 6.0- 5.51 m with back drop [0.16] | 7,549.48 | 7,549.48 | 0.00397789507684941 | Cons. | Z3 | Sew | Cons | CS.UNSC | Manhole | SUB.C | Rd 02 | Sew |
| B6.33 05 39.01.707 |  | Test, Internal Finishing, Benching & Cover (36.00% Completed) | 76.84d | 2026-06-18 A | 2026-09-15 A | B6.33 05 39.01.697 SS | 100% |  |  |  |  | Labor [22.45 h]; Foreman [11.23 h]; Plumber Helper [11.23 h]; Plumber [11.23 h]; Mason [11.23 h]; MH depth 6.0- 5.51 m with back drop [0.04] | 1,761.55 | 1,761.55 | 0.000928175517931532 | Cons. | Z3 | Sew | Cons | CS.UNSC | Manhole | SUB.C | Rd 02 | Sew |
| B6.33 05 39.01.717 |  | Backfilling (36.00% Completed) | 75.8d | 2026-06-20 A | 2026-09-15 A | B6.33 05 39.01.1667, B6.33 05 39.01.707 SS, B6.33 05 39.01.667 SS | 100% |  |  |  |  | Labor [28.07 h]; Foreman [14.03 h]; Operator [28.07 h]; Surveyor [14.03 h]; Surveyor Helper [14.03 h]; Loader [14.4 h]; Water Tanker [14.4 h]; Dump Truck [14.4 h]; Plate Compactor [14.4 h]; MH depth 6.0- 5.51 m with back drop [0.07] | 3,271.44 | 3,271.44 | 0.00172375453330142 | Cons. | Z3 | Sew | Cons | CS.UNSC | Manhole | SUB.C | Rd 02 | Sew |
| B6.33 05 39.01.687_R |  | Blinding Conc, & RC Base(Rem) | 2.04d | 2026-09-20 A | 2026-10-22 | B6.33 05 39.01.677, B6.33 05 39.01.687 | 40% | 1.22d | 2026-09-16 | 2026-09-19 | 112.1d | Labor [29.94 h]; Foreman [14.97 h]; Laboratory Officer [14.97 h]; Carpenter [14.97 h]; Steelfixer [14.97 h]; Mason [14.97 h]; MH depth 6.0- 5.51 m with back drop [0.07] | 3,131.64 | 2,770.73 | 0.000928175517931532 | Cons. | Z3 | Sew | Cons | CS.UNSC | Manhole | SUB.C | Rd 02 | Sew |
| B6.33 05 39.01.697_R |  | Manhole Installation(Rem) | 1.52d | 2026-09-24 A | 2026-10-21 | B6.33 05 39.01.687_R SS, B6.33 05 39.01.697 | 40% | 0.91d | 2026-09-16 | 2026-09-17 | 112.41d | Labor [19.96 h]; Operator [19.96 h]; Surveyor [9.98 h]; Surveyor Helper [9.98 h]; Boom Truck [10.24 h]; Mobile Crane [10.24 h]; MH depth 6.0- 5.51 m with back drop [0.29] | 13,421.3 | 12,053.89 | 0.00397789507684941 | Cons. | Z3 | Sew | Cons | CS.UNSC | Manhole | SUB.C | Rd 02 | Sew |
| B6.33 05 39.01.707_R |  | Test, Internal Finishing, Benching & Cover(Rem) | 3.52d | 2026-09-30 A | 2026-10-24 | B6.33 05 39.01.697_R SS, B6.33 05 39.01.707 | 40% | 2.11d | 2026-09-16 | 2026-09-20 | 111.21d | Labor [39.92 h]; Foreman [19.96 h]; Plumber Helper [19.96 h]; Plumber [19.96 h]; Mason [19.96 h]; MH depth 6.0- 5.51 m with back drop [0.07] | 3,131.64 | 2,225.92 | 0.000928175517931532 | Cons. | Z3 | Sew | Cons | CS.UNSC | Manhole | SUB.C | Rd 02 | Sew |
| B6.33 05 39.01.717_R |  | Backfilling(Rem) | 4.04d | 2026-10-03 A | 2026-10-24 | B6.33 05 39.01.1667, B6.33 05 39.01.707_R SS, B6.33 05 39.01.667_R SS, B6.33 05 39.01.717 | 40% | 2.42d | 2026-09-16 | 2026-09-21 | 110.9d | Labor [49.9 h]; Foreman [24.95 h]; Operator [49.9 h]; Surveyor [24.95 h]; Surveyor Helper [24.95 h]; Loader [25.6 h]; Water Tanker [25.6 h]; Dump Truck [25.6 h]; Plate Compactor [25.6 h]; MH depth 6.0- 5.51 m with back drop [0.13] | 5,815.9 | 3,657.82 | 0.00172375453330142 | Cons. | Z3 | Sew | Cons | CS.UNSC | Manhole | SUB.C | Rd 02 | Sew |
|  | Stormwater Network | **Stormwater Network** |  | 2026-02-06 | 2026-10-25 |  |  |  |  |  |  |  |  |  |  |  |  |  |  |  |  |  |  |  |
|  | GRP | **GRP** |  | 2026-02-06 | 2026-05-21 |  |  |  |  |  |  |  |  |  |  |  |  |  |  |  |  |  |  |  |
|  | ?40011 | **?1400** |  | 2026-02-06 | 2026-05-21 |  |  |  |  |  |  |  |  |  |  |  |  |  |  |  |  |  |  |  |
|  | 3 | **Depth From 2.5m to 3.5m** |  | 2026-02-06 | 2026-05-21 |  |  |  |  |  |  |  |  |  |  |  |  |  |  |  |  |  |  |  |
| B6.33 42 11.27-1.1 |  | Excavation | 19.55d | 2026-02-06 A | 2026-03-05 A | B6.33 05 39.01.677 | 100% |  | 2026-02-07 | 2026-03-05 |  | Labor [28.35 h]; Foreman [14.17 h]; Operator [28.35 h]; Surveyor [14.17 h]; Surveyor Helper [14.17 h]; Excavator (With Bucket) [16 h]; Water Tanker [16 h]; Dump Truck [16 h]; Plate Compactor [16 h]; 2.51m - 3.5m [22.37] | 39,025.62 | 39,025.62 | 0.00771842921589493 | Cons. | Z3 | Storm | Cons | CS.UNSC | GRPs | SUB.C | Rd 02 | Strm |
| B6.33 42 11.27-1.3 |  | Sand Bedding | 18.4d | 2026-02-08 A | 2026-03-05 A | B6.33 42 11.27-1.1 | 100% |  |  |  |  | Labor [28.35 h]; Foreman [14.17 h]; Operator [56.7 h]; Surveyor [14.17 h]; Surveyor Helper [14.17 h]; Loader [16 h]; Water Tanker [16 h]; Dump Truck [16 h]; Plate Compactor [16 h]; 2.51m - 3.5m [5.55] | 9,683.6 | 9,683.6 | 0.00191520724937366 | Cons. | Z3 | Storm | Cons | CS.UNSC | GRPs | SUB.C | Rd 02 | Strm |
| B6.33 42 11.27-1.5 |  | Pipe Laying | 15.4d | 2026-02-11 A | 2026-03-05 A | B6.33 42 11.27-1.3 | 100% |  |  |  |  | Labor [28.35 h]; Foreman [14.17 h]; Plumber Helper [14.17 h]; Plumber [14.17 h]; Operator [14.17 h]; Surveyor [14.17 h]; Surveyor Helper [14.17 h]; Mobile Crane [16 h]; 2.51m - 3.5m [49.98] | 87,202.67 | 87,202.67 | 0.0172468143729312 | Cons. | Z3 | Storm | Cons | CS.UNSC | GRPs | SUB.C | Rd 02 | Strm |
| B6.33 42 11.27-1.7 |  | Embedment & Test | 58.33d | 2026-03-05 A | 2026-05-20 A | B6.33 42 11.27-1.5 | 100% |  |  |  |  | Labor [56.7 h]; Foreman [28.35 h]; Plumber Helper [28.35 h]; Plumber [28.35 h]; Operator [56.7 h]; Surveyor [28.35 h]; Surveyor Helper [28.35 h]; Loader [32 h]; Water Tanker [32 h]; Dump Truck [32 h]; Plate Compactor [32 h]; Roller Compactor [32 h]; 2.51m - 3.5m [22.22] | 38,759.54 | 38,759.54 | 0.00766580356177879 | Cons. | Z3 | Storm | Cons | CS.UNSC | GRPs | SUB.C | Rd 02 | Strm |
| B6.33 42 11.27-1.9 |  | Backfilling & Warrning Tape | 47.1d | 2026-03-28 A | 2026-05-21 A | B6.33 42 11.27-1.7, B6.33 42 11.34-1.9 | 100% |  |  |  |  | Labor [70.87 h]; Foreman [35.44 h]; Operator [141.75 h]; Surveyor [35.44 h]; Surveyor Helper [35.44 h]; Loader [40 h]; Water Tanker [40 h]; Dump Truck [40 h]; Plate Compactor [40 h]; Roller Compactor [40 h]; 2.51m - 3.5m [11.12] | 19,392.35 | 19,392.35 | 0.00383538906303142 | Cons. | Z3 | Storm | Cons | CS.UNSC | GRPs | SUB.C | Rd 02 | Strm |
|  | ?400111 | **?1500** |  | 2026-02-08 | 2026-05-20 |  |  |  |  |  |  |  |  |  |  |  |  |  |  |  |  |  |  |  |
|  | 3 | **Depth From 2.5m to 3.5m** |  | 2026-02-08 | 2026-05-20 |  |  |  |  |  |  |  |  |  |  |  |  |  |  |  |  |  |  |  |
| B6.33 42 11.27-1.2 |  | Excavation | 17.72d | 2026-02-08 A | 2026-03-04 A | B6.33 42 11.27-1.1 | 100% |  |  |  |  | Labor [28.35 h]; Foreman [14.17 h]; Operator [28.35 h]; Surveyor [14.17 h]; Surveyor Helper [14.17 h]; Excavator (With Bucket) [16 h]; Water Tanker [16 h]; Dump Truck [16 h]; Plate Compactor [16 h]; 2.51m - 3.5m [30.32] | 58,672.54 | 58,672.54 | 0.0124664505738366 | Cons. | Z3 | Storm | Cons | CS.UNSC | GRPs | SUB.C | Rd 02 | Strm |
| B6.33 42 11.27-1.4 |  | Sand Bedding | 14.72d | 2026-02-11 A | 2026-03-04 A | B6.33 42 11.27-1.2 | 100% |  |  |  |  | Labor [28.35 h]; Foreman [14.17 h]; Operator [56.7 h]; Surveyor [14.17 h]; Surveyor Helper [14.17 h]; Loader [16 h]; Water Tanker [16 h]; Dump Truck [16 h]; Plate Compactor [16 h]; 2.51m - 3.5m [7.33] | 14,192.71 | 14,192.71 | 0.00311796124261252 | Cons. | Z3 | Storm | Cons | CS.UNSC | GRPs | SUB.C | Rd 02 | Strm |
| B6.33 42 11.27-1.6 |  | Pipe Laying | 12.87d | 2026-02-13 A | 2026-03-04 A | B6.33 42 11.27-1.4 | 100% |  | 2026-02-14 | 2026-03-04 |  | Labor [28.35 h]; Foreman [14.17 h]; Plumber Helper [14.17 h]; Plumber [14.17 h]; Operator [14.17 h]; Surveyor [14.17 h]; Surveyor Helper [14.17 h]; Mobile Crane [16 h]; 2.51m - 3.5m [66] | 127,709.86 | 127,709.86 | 0.0280562567868992 | Cons. | Z3 | Storm | Cons | CS.UNSC | GRPs | SUB.C | Rd 02 | Strm |
| B6.33 42 11.27-1.8 |  | Embedment & Test | 58.39d | 2026-03-04 A | 2026-05-20 A | B6.33 42 11.27-1.6 | 100% |  |  |  |  | Labor [56.7 h]; Foreman [28.35 h]; Plumber Helper [28.35 h]; Plumber [28.35 h]; Operator [56.7 h]; Surveyor [28.35 h]; Surveyor Helper [28.35 h]; Loader [32 h]; Water Tanker [32 h]; Dump Truck [32 h]; Plate Compactor [32 h]; Roller Compactor [32 h]; 2.51m - 3.5m [30.32] | 58,672.54 | 58,672.54 | 0.0124664505738366 | Cons. | Z3 | Storm | Cons | CS.UNSC | GRPs | SUB.C | Rd 02 | Strm |
| B6.33 42 11.27-1.10 |  | Backfilling & Warrning Tape | 51.58d | 2026-03-16 A | 2026-05-20 A | B6.33 42 11.27-1.8, B6.33 42 11.27-1.9 | 100% |  |  |  |  | Labor [70.87 h]; Foreman [35.44 h]; Operator [141.75 h]; Surveyor [35.44 h]; Surveyor Helper [35.44 h]; Loader [40 h]; Water Tanker [40 h]; Dump Truck [40 h]; Plate Compactor [40 h]; Roller Compactor [40 h]; 2.51m - 3.5m [14.67] | 28,385.43 | 28,385.43 | 0.00623592248522508 | Cons. | Z3 | Storm | Cons | CS.UNSC | GRPs | SUB.C | Rd 02 | Strm |

| ID | WBS | Activity | Duration | Start | Finish | Predecessors | Complete | Remaining | Planned start | Planned finish | Total float | Free float | Resources | Cost | Actual cost | Weight % | DMM2 Weekly Progress | DMM2 Zones | Networks & Stations | DMM2 Phases | UNASCO | Networks Components | Subcontractors works | Dmm2 Roads | Yellow Sheet |
| --- | --- | --- | --- | --- | --- | --- | --- | --- | --- | --- | --- | --- | --- | --- | --- | --- | --- | --- | --- | --- | --- | --- | --- | --- | --- |
|  | Strom Manholes | **Manholes** |  | 2026-02-11 | 2026-09-24 |  |  |  |  |  |  |  |  |  |  |  |  |  |  |  |  |  |  |  |  |
|  | 3 | **?2000** |  | 2026-02-11 | 2026-09-24 |  |  |  |  |  |  |  |  |  |  |  |  |  |  |  |  |  |  |  |  |
|  | 3 | **Depth From 2.5m to 3.5m** |  | 2026-02-11 | 2026-09-24 |  |  |  |  |  |  |  |  |  |  |  |  |  |  |  |  |  |  |  |  |
| B6.33 05 39.01.3527 |  | Excavation & Compaction | 1d | 2026-02-11 A | 2026-02-12 A | B6.33 42 11.27-1.2 | 100% |  |  |  |  |  | Labor [28.35 h]; Foreman [14.17 h]; Operator [28.35 h]; Surveyor [14.17 h]; Surveyor Helper [14.17 h]; Excavator (With Bucket) [16 h]; Water Tanker [16 h]; Dump Truck [16 h]; Plate Compactor [16 h]; Storm MH depth 2.51 - 3.5m [0.63] | 10,765.08 | 10,765.08 | 0.00208346832855844 | Cons. | Z3 | Storm | Cons | CS.UNSC | Manhole | SUB.C | Rd 02 | Strm |
| B6.33 05 39.01.3537 |  | Blinding Conc, & RC Base | 3d | 2026-05-20 A | 2026-05-23 A | B6.33 05 39.01.3527 | 100% |  |  |  |  |  | Labor [42.52 h]; Foreman [21.26 h]; Laboratory Officer [21.26 h]; Carpenter [21.26 h]; Steelfixer [21.26 h]; Mason [21.26 h]; Storm MH depth 2.51 - 3.5m [0.42] | 7,095.17 | 7,095.17 | 0.00137319503473171 | Cons. | Z3 | Storm | Cons | CS.UNSC | Manhole | SUB.C | Rd 02 | Strm |
| B6.33 05 39.01.3547 |  | Manhole Installation (80.11% Completed) | 95d | 2026-05-24 A | 2026-09-15 A | B6.33 05 39.01.3537 | 100% |  |  |  |  |  | Labor [24.98 h]; Operator [24.98 h]; Surveyor [12.49 h]; Surveyor Helper [12.49 h]; Boom Truck [12.82 h]; Mobile Crane [12.82 h]; Storm MH depth 2.51 - 3.5m [1.58] | 26,914.75 | 26,914.75 | 0.00625042100380389 | Cons. | Z3 | Storm | Cons | CS.UNSC | Manhole | SUB.C | Rd 02 | Strm |
| B6.33 05 39.01.3557 |  | Test, Internal Finishing, Benching & Cover (80.00% Completed) | 77.6d | 2026-06-17 A | 2026-09-15 A | B6.33 05 39.01.3547 SS | 100% |  |  |  |  |  | Labor [49.9 h]; Foreman [24.95 h]; Plumber Helper [24.95 h]; Plumber [24.95 h]; Mason [24.95 h]; Storm MH depth 2.51 - 3.5m [0.33] | 5,676.13 | 5,676.13 | 0.00137319503473171 | Cons. | Z3 | Storm | Cons | CS.UNSC | Manhole | SUB.C | Rd 02 | Strm |
| B6.33 05 39.01.3567 |  | Backfilling (80.11% Completed) | 73.6d | 2026-06-22 A | 2026-09-15 A | B6.33 42 11.27-1.10, B6.33 05 39.01.3557 SS | 100% |  |  |  |  |  | Labor [62.45 h]; Foreman [31.23 h]; Operator [62.45 h]; Surveyor [31.23 h]; Surveyor Helper [31.23 h]; Loader [32.04 h]; Water Tanker [32.04 h]; Dump Truck [32.04 h]; Plate Compactor [32.04 h]; Storm MH depth 2.51 - 3.5m [0.73] | 12,421.54 | 12,421.54 | 0.00300107232895791 | Cons. | Z3 | Storm | Cons | CS.UNSC | Manhole | SUB.C | Rd 02 | Strm |
| B6.33 05 39.01.3547_R |  | Manhole Installation(Rem) | 3d | 2026-09-13 A | 2026-09-15 A | B6.33 05 39.01.3537, B6.33 05 39.01.3547 | 100% |  | 2026-09-16 | 2026-09-19 |  |  | Labor [6.2 h]; Operator [6.2 h]; Surveyor [3.1 h]; Surveyor Helper [3.1 h]; Boom Truck [3.18 h]; Mobile Crane [3.18 h]; Storm MH depth 2.51 - 3.5m [0.39] | 6,683.89 | 6,683.89 | 0.00625042100380389 | Cons. | Z3 | Storm | Cons | CS.UNSC | Manhole | SUB.C | Rd 02 | Strm |
| B6.33 05 39.01.3557_R |  | Test, Internal Finishing, Benching & Cover(Rem) | 3d | 2026-09-20 A | 2026-09-22 A | B6.33 05 39.01.3547_R SS, B6.33 05 39.01.3557 | 100% |  | 2026-09-16 | 2026-09-19 |  |  | Labor [12.47 h]; Foreman [6.24 h]; Plumber Helper [6.24 h]; Plumber [6.24 h]; Mason [6.24 h]; Storm MH depth 2.51 - 3.5m [0.08] | 1,419.03 | 1,419.03 | 0.00137319503473171 | Cons. | Z3 | Storm | Cons | CS.UNSC | Manhole | SUB.C | Rd 02 | Strm |
| B6.33 05 39.01.3567_R |  | Backfilling(Rem) | 3d | 2026-09-20 A | 2026-09-24 A | B6.33 42 11.27-1.10, B6.33 05 39.01.3557_R SS, B6.33 05 39.01.3567 | 100% |  | 2026-09-16 | 2026-09-19 |  |  | Labor [15.51 h]; Foreman [7.75 h]; Operator [15.51 h]; Surveyor [7.75 h]; Surveyor Helper [7.75 h]; Loader [7.96 h]; Water Tanker [7.96 h]; Dump Truck [7.96 h]; Plate Compactor [7.96 h]; Storm MH depth 2.51 - 3.5m [0.18] | 3,084.71 | 3,084.71 | 0.00300107232895791 | Cons. | Z3 | Storm | Cons | CS.UNSC | Manhole | SUB.C | Rd 02 | Strm |
|  | Catch Basins | **Catch Basins** |  | 2026-03-05 | 2026-10-25 |  |  |  |  |  |  |  |  |  |  |  |  |  |  |  |  |  |  |  |  |
|  | Sing | **Single** |  | 2026-06-10 | 2026-10-22 |  |  |  |  |  |  |  |  |  |  |  |  |  |  |  |  |  |  |  |  |
| B6.33 05 40.01.370 |  | Excavation, Compaction & Vapour Barrier (80.00% Completed) | 84d | 2026-06-10 A | 2026-09-15 A | B6.33 05 39.01.3527 | 100% |  |  |  |  |  | Labor [24.95 h]; Foreman [12.47 h]; Operator [24.95 h]; Surveyor [12.47 h]; Surveyor Helper [12.47 h]; Excavator (With Bucket) [12.8 h]; Water Tanker [12.8 h]; Dump Truck [12.8 h]; Roller Compactor [12.8 h]; Single Catch basin [2.39] | 10,815.73 | 10,815.73 | 0.00296566869933904 | Cons. | Z3 | Storm | Cons | CS.UNSC | CBs | SUB.C | Rd 02 | Strm |
| B6.33 05 40.01.380 |  | Blinding Conc. (80.00% Completed) | 80d | 2026-06-15 A | 2026-09-15 A | B6.33 05 40.01.370 SS | 100% |  |  |  |  |  | Labor [24.95 h]; Foreman [12.47 h]; Laboratory Officer [12.47 h]; Carpenter [12.47 h]; Steelfixer [12.47 h]; Mason [12.47 h]; Single Catch basin [1.59] | 7,194.81 | 7,194.81 | 0.00197281439564727 | Cons. | Z3 | Storm | Cons | CS.UNSC | CBs | SUB.C | Rd 02 | Strm |
| B6.33 05 40.01.390 |  | Catch Basin Installation (80.00% Completed) | 79d | 2026-06-16 A | 2026-09-15 A | B6.33 05 40.01.380 SS | 100% |  |  |  |  |  | Labor [37.42 h]; Foreman [18.71 h]; Carpenter [18.71 h]; Steelfixer [18.71 h]; Mason [18.71 h]; Operator [37.42 h]; Surveyor [18.71 h]; Surveyor Helper [18.71 h]; Boom Truck [19.2 h]; Single Catch basin [7.15] | 32,306.11 | 32,306.11 | 0.00885832346280832 | Cons. | Z3 | Storm | Cons | CS.UNSC | CBs | SUB.C | Rd 02 | Strm |
| B6.33 05 40.01.400 |  | Backfilling, DI Frame & Grate Cover Fixing (80.00% Completed) | 77d | 2026-06-18 A | 2026-09-15 A | B6.33 42 11.36-1.22, B6.33 42 11.35-1.22, B6.33 05 40.01.390 SS | 100% |  |  |  |  |  | Labor [62.37 h]; Foreman [31.18 h]; Operator [62.37 h]; Surveyor [31.18 h]; Surveyor Helper [31.18 h]; Loader [32 h]; Water Tanker [32 h]; Dump Truck [32 h]; Plate Compactor [32 h]; Single Catch basin [4.76] | 21,537.41 | 21,537.41 | 0.00590554897520555 | Cons. | Z3 | Storm | Cons | CS.UNSC | CBs | SUB.C | Rd 02 | Strm |
| B6.33 05 40.01.400_R |  | Backfilling, DI Frame & Grate Cover Fixing(Rem) | 2d | 2026-10-06 A | 2026-10-22 | B6.33 42 11.36-1.22, B6.33 42 11.35-1.22, B6.33 05 40.01.390_R SS, B6.33 05 40.01.400 | 44% | 1.12d | 2026-10-14 | 2026-10-15 | 112.2d |  | Labor [15.59 h]; Foreman [7.8 h]; Operator [15.59 h]; Surveyor [7.8 h]; Surveyor Helper [7.8 h]; Loader [8 h]; Water Tanker [8 h]; Dump Truck [8 h]; Plate Compactor [8 h]; Single Catch basin [1.19] | 5,384.35 | 2,369.11 | 0.00590554897520555 | Cons. | Z3 | Storm | Cons | CS.UNSC | CBs | SUB.C | Rd 02 | Strm |
| B6.33 05 40.01.370_R |  | Excavation, Compaction & Vapour Barrier(Rem) | 3d | 2026-10-14 A | 2026-10-17 A | B6.33 05 39.01.3527, B6.33 05 40.01.370 | 100% |  |  |  |  |  | Labor [6.24 h]; Foreman [3.12 h]; Operator [6.24 h]; Surveyor [3.12 h]; Surveyor Helper [3.12 h]; Excavator (With Bucket) [3.2 h]; Water Tanker [3.2 h]; Dump Truck [3.2 h]; Roller Compactor [3.2 h]; Single Catch basin [0.6] | 2,703.93 | 2,703.93 | 0.00296566869933904 | Cons. | Z3 | Storm | Cons | CS.UNSC | CBs | SUB.C | Rd 02 | Strm |
| B6.33 05 40.01.380_R |  | Blinding Conc.(Rem) | 3d | 2026-10-14 A | 2026-10-17 A | B6.33 05 40.01.370_R SS, B6.33 05 40.01.380 | 100% |  |  |  |  |  | Labor [6.24 h]; Foreman [3.12 h]; Laboratory Officer [3.12 h]; Carpenter [3.12 h]; Steelfixer [3.12 h]; Mason [3.12 h]; Single Catch basin [0.4] | 1,798.7 | 1,798.7 | 0.00197281439564727 | Cons. | Z3 | Storm | Cons | CS.UNSC | CBs | SUB.C | Rd 02 | Strm |
| B6.33 05 40.01.390_R |  | Catch Basin Installation(Rem) | 3d | 2026-10-14 A | 2026-10-17 A | B6.33 05 40.01.380_R SS, B6.33 05 40.01.390 | 100% |  |  |  |  |  | Labor [9.36 h]; Foreman [4.68 h]; Carpenter [4.68 h]; Steelfixer [4.68 h]; Mason [4.68 h]; Operator [9.36 h]; Surveyor [4.68 h]; Surveyor Helper [4.68 h]; Boom Truck [4.8 h]; Single Catch basin [1.79] | 8,076.53 | 8,076.53 | 0.00885832346280832 | Cons. | Z3 | Storm | Cons | CS.UNSC | CBs | SUB.C | Rd 02 | Strm |
|  | Dou | **Double** |  | 2026-10-05 | 2026-10-25 |  |  |  |  |  |  |  |  |  |  |  |  |  |  |  |  |  |  |  |  |
| B6.33 05 40.01.850 |  | Excavation, Compaction & Vapour Barrier | 3d | 2026-10-05 A | 2026-10-13 A | B6.33 05 40.01.370_R | 100% |  | 2026-10-18 | 2026-10-20 |  |  | Labor [31.18 h]; Foreman [15.59 h]; Operator [31.18 h]; Surveyor [15.59 h]; Surveyor Helper [15.59 h]; Excavator (With Bucket) [16 h]; Water Tanker [16 h]; Dump Truck [16 h]; Roller Compactor [16 h]; Double Catch basin [0.6] | 5,258.04 | 5,258.04 | 0.000879450288447266 | Cons. | Z3 | Storm | Cons | CS.UNSC | CBs | SUB.C | Rd 02 | Strm |
| B6.33 05 40.01.860 |  | Blinding Conc. | 3d | 2026-10-10 A | 2026-10-14 A | B6.33 05 40.01.850 | 100% |  | 2026-10-21 | 2026-10-24 |  |  | Labor [31.18 h]; Foreman [15.59 h]; Laboratory Officer [15.59 h]; Carpenter [15.59 h]; Steelfixer [15.59 h]; Mason [15.59 h]; Double Catch basin [0.39] | 3,455.28 | 3,455.28 | 0.000577924475265344 | Cons. | Z3 | Storm | Cons | CS.UNSC | CBs | SUB.C | Rd 02 | Strm |
| B6.33 05 40.01.870 |  | Catch Basin Installation | 4d | 2026-10-11 A | 2026-10-19 A | B6.33 05 40.01.860 | 100% |  | 2026-10-25 | 2026-10-28 |  |  | Labor [46.78 h]; Foreman [23.39 h]; Carpenter [23.39 h]; Steelfixer [23.39 h]; Mason [23.39 h]; Operator [46.78 h]; Surveyor [23.39 h]; Surveyor Helper [23.39 h]; Boom Truck [24 h]; Double Catch basin [1.82] | 16,074.61 | 16,074.61 | 0.00268861205772004 | Cons. | Z3 | Storm | Cons | CS.UNSC | CBs | SUB.C | Rd 02 | Strm |
| B6.33 05 40.01.880 |  | Backfilling, DI Frame & Grate Cover Fixing | 6d | 2026-10-18 A | 2026-10-25 | B6.33 42 11.35-1.22, B6.33 42 11.36-1.22 | 44% | 3.36d | 2026-10-14 | 2026-10-20 | 49.96d | 0d | Labor [77.96 h]; Foreman [38.98 h]; Operator [77.96 h]; Surveyor [38.98 h]; Surveyor Helper [38.98 h]; Loader [40 h]; Water Tanker [40 h]; Dump Truck [40 h]; Plate Compactor [40 h]; Double Catch basin [1.19] | 10,516.1 | 2,976.06 | 0.00175890508448974 | Cons. | Z3 | Storm | Cons | CS.UNSC | CBs | SUB.C | Rd 02 | Strm |

| ID | WBS | Activity | Duration | Start | Finish | Predecessors | Complete | Total float | Free float | Resources | Cost | Actual cost | Weight % | DMM2 Weekly Progress | DMM2 Zones | Networks & Stations | DMM2 Phases | UNASCO | Networks Components | Subcontractors works | Dmm2 Roads | Yellow Sheet |
| --- | --- | --- | --- | --- | --- | --- | --- | --- | --- | --- | --- | --- | --- | --- | --- | --- | --- | --- | --- | --- | --- | --- |
|  | UPVC | **UPVC** |  | 2026-03-05 | 2026-10-01 |  |  |  |  |  |  |  |  |  |  |  |  |  |  |  |  |  |
|  | UPVC300 | **?300 From 0.0 to 1.5m** |  | 2026-03-05 | 2026-10-01 |  |  |  |  |  |  |  |  |  |  |  |  |  |  |  |  |  |
| B6.33 42 11.35-1.22 |  | Fittings & Pipe Installation | 4.5d | 2026-03-05 A | 2026-03-12 A | B6.33 05 39.01.3527 | 100% |  |  | Labor [28.35 h]; Foreman [14.17 h]; Plumber Helper [14.17 h]; Plumber [14.17 h]; Surveyor [14.17 h]; Surveyor Helper [14.17 h]; less than 1.5 [186.46] | 112,143.85 | 112,143.85 | 0.0603343421083148 | Cons. | Z3 | Storm | Cons | CS.UNSC | UPVC | SUB.C | Rd 02 | Strm |
| B6.33 42 11.35-1.20 |  | Catch Basin Opening Prep. (68.04% Completed) | 87d | 2026-06-07 A | 2026-09-15 A | B6.33 42 11.35-1.22 | 100% |  |  | Labor [21.22 h]; Foreman [10.61 h]; Plumber Helper [10.61 h]; Plumber [10.61 h]; less than 1.5 [31.72] | 19,075.67 | 19,075.67 | 0.0150835855285905 | Cons. | Z3 | Storm | Cons | CS.UNSC | UPVC | SUB.C | Rd 02 | Strm |
| B6.33 42 11.35-1.20_R |  | Catch Basin Opening Prep.(Rem) | 3d | 2026-09-29 A | 2026-10-01 A | B6.33 05 40.01.870 FF, B6.33 42 11.35-1.20 | 100% |  |  | Labor [9.97 h]; Foreman [4.98 h]; Plumber Helper [4.98 h]; Plumber [4.98 h]; less than 1.5 [14.9] | 8,960.29 | 8,960.29 | 0.0150835855285905 | Cons. | Z3 | Storm | Cons | CS.UNSC | UPVC | SUB.C | Rd 02 | Strm |
|  | UPVC3001 | **?400 From 0.0 to 1.5m** |  | 2026-03-07 | 2026-10-01 |  |  |  |  |  |  |  |  |  |  |  |  |  |  |  |  |  |
| B6.33 42 11.36-1.22 |  | Fittings & Pipe Installation | 5.25d | 2026-03-07 A | 2026-03-15 A | B6.33 42 11.35-1.22 | 100% |  |  | Labor [28.35 h]; Foreman [14.17 h]; Plumber Helper [14.17 h]; Plumber [14.17 h]; Surveyor [14.17 h]; Surveyor Helper [14.17 h]; less than 1.5 [186.46] | 112,143.85 | 112,143.85 | 0.0603343421083148 | Cons. | Z3 | Storm | Cons | CS.UNSC | UPVC | SUB.C | Rd 02 | Strm |
| B6.33 42 11.36-1.20 |  | Catch Basin Opening Prep. (68.04% Completed) | 87d | 2026-06-07 A | 2026-09-15 A | B6.33 42 11.35-1.20 SS | 100% |  |  | Labor [21.22 h]; Foreman [10.61 h]; Plumber Helper [10.61 h]; Plumber [10.61 h]; less than 1.5 [31.72] | 19,075.67 | 19,075.67 | 0.0150835855285905 | Cons. | Z3 | Storm | Cons | CS.UNSC | UPVC | SUB.C | Rd 02 | Strm |
| B6.33 42 11.36-1.20_R |  | Catch Basin Opening Prep.(Rem) | 3d | 2026-09-29 A | 2026-10-01 A | B6.33 42 11.35-1.20_R SS, B6.33 42 11.36-1.20 | 100% |  |  | Labor [9.97 h]; Foreman [4.98 h]; Plumber Helper [4.98 h]; Plumber [4.98 h]; less than 1.5 [14.9] | 8,960.29 | 8,960.29 | 0.0150835855285905 | Cons. | Z3 | Storm | Cons | CS.UNSC | UPVC | SUB.C | Rd 02 | Strm |
|  | Potable Water | **Potable Water Network** |  | 2026-02-01 | 2026-11-01 |  |  |  |  |  |  |  |  |  |  |  |  |  |  |  |  |  |
|  | HDPE | **HDPE Pipes** |  | 2026-02-01 | 2026-10-24 |  |  |  |  |  |  |  |  |  |  |  |  |  |  |  |  |  |
|  | ?110mm | **?110mm** |  | 2026-02-01 | 2026-10-24 |  |  |  |  |  |  |  |  |  |  |  |  |  |  |  |  |  |
|  | Depth: 0.0m - 1.5m | **Depth: 0.0m - 1.5m** |  | 2026-02-05 | 2026-10-24 |  |  |  |  |  |  |  |  |  |  |  |  |  |  |  |  |  |
| B3.33 14 13.01.0101 |  | Excavation | 0.5d | 2026-02-05 A | 2026-02-07 A | B1.1.31 23 23.132 | 100% |  |  | Labor [28.35 h]; Foreman [14.17 h]; Operator [28.35 h]; Surveyor [14.17 h]; Surveyor Helper [14.17 h]; Excavator (With Bucket) [16 h]; Water Tanker [16 h]; Dump Truck [16 h]; Plate Compactor [16 h]; Depth: 0.0m - 1.5m [155.75] | 22,426.31 | 22,426.31 | 0.00449622803237392 | Cons. | Z3 | Potable | Cons | CS.UNSC | HDPEs | SUB.C | Rd 02 | Pot |
| B3.33 14 13.01.0105 |  | Sand Bedding | 0.5d | 2026-02-07 A | 2026-02-08 A | B3.33 14 13.01.0101 | 100% |  |  | Labor [28.35 h]; Foreman [14.17 h]; Operator [56.7 h]; Surveyor [14.17 h]; Surveyor Helper [14.17 h]; Loader [16 h]; Water Tanker [16 h]; Dump Truck [16 h]; Plate Compactor [16 h]; Depth: 0.0m - 1.5m [38.94] | 5,607.6 | 5,607.6 | 0.00112426239033505 | Cons. | Z3 | Potable | Cons | CS.UNSC | HDPEs | SUB.C | Rd 02 | Pot |
| B3.33 14 13.01.0109 |  | Pipe Laying | 30.66d | 2026-04-15 A | 2026-05-20 A | B3.33 14 13.01.0105 | 100% |  |  | Labor [28.35 h]; Foreman [14.17 h]; Plumber Helper [14.17 h]; Plumber [14.17 h]; Operator [14.17 h]; Surveyor [14.17 h]; Surveyor Helper [14.17 h]; Mobile Crane [16 h]; Depth: 0.0m - 1.5m [350.44] | 50,460.23 | 50,460.23 | 0.0101167184550828 | Cons. | Z3 | Potable | Cons | CS.UNSC | HDPEs | SUB.C | Rd 02 | Pot |
| B3.33 14 13.01.01013 |  | Embedment & Test | 24.66d | 2026-04-22 A | 2026-05-21 A | B3.33 14 13.01.0109 | 100% |  |  | Labor [56.7 h]; Foreman [28.35 h]; Plumber Helper [28.35 h]; Plumber [28.35 h]; Operator [56.7 h]; Surveyor [28.35 h]; Surveyor Helper [28.35 h]; Loader [32 h]; Water Tanker [32 h]; Dump Truck [32 h]; Plate Compactor [32 h]; Roller Compactor [32 h]; Depth: 0.0m - 1.5m [155.75] | 22,426.31 | 22,426.31 | 0.00449622803237392 | Cons. | Z3 | Potable | Cons | CS.UNSC | HDPEs | SUB.C | Rd 02 | Pot |
| B3.33 14 13.01.01017 |  | Backfilling & Warrning Tape (66.86% Completed) | 119.45d | 2026-04-25 A | 2026-09-15 A | B3.33 14 13.01.01013 | 100% |  |  | Labor [52.12 h]; Foreman [26.06 h]; Operator [104.25 h]; Surveyor [26.06 h]; Surveyor Helper [26.06 h]; Loader [26.74 h]; Water Tanker [26.74 h]; Dump Truck [26.74 h]; Plate Compactor [26.74 h]; Roller Compactor [26.74 h]; Depth: 0.0m - 1.5m [52.07] | 7,497.01 | 7,497.01 | 0.00224811401618696 | Cons. | Z3 | Potable | Cons | CS.UNSC | HDPEs | SUB.C | Rd 02 | Pot |
| B3.33 14 13.01.01017_R |  | Backfilling & Warrning Tape(Rem) | 2.66d | 2026-10-21 | 2026-10-24 | B3.33 14 13.01.01013, B3.33 14 13.01.01017 |  | 110.66d |  | Labor [25.84 h]; Foreman [12.92 h]; Operator [51.67 h]; Surveyor [12.92 h]; Surveyor Helper [12.92 h]; Loader [13.26 h]; Water Tanker [13.26 h]; Dump Truck [13.26 h]; Plate Compactor [13.26 h]; Roller Compactor [13.26 h]; Depth: 0.0m - 1.5m [25.81] | 3,716.15 |  | 0.00224811401618696 | Cons. | Z3 | Potable | Cons | CS.UNSC | HDPEs | SUB.C | Rd 02 | Pot |
|  | Depth: 1.51m - 2.5m | **Depth: 1.51m - 2.5m** |  | 2026-02-01 | 2026-10-22 |  |  |  |  |  |  |  |  |  |  |  |  |  |  |  |  |  |
| B3.33 14 13.01.0103 |  | Excavation | 82.04d | 2026-02-01 A | 2026-05-20 A | B3.33 14 13.01.0101 | 100% |  |  | Labor [28.35 h]; Foreman [14.17 h]; Operator [28.35 h]; Surveyor [14.17 h]; Surveyor Helper [14.17 h]; Excavator (With Bucket) [16 h]; Water Tanker [16 h]; Dump Truck [16 h]; Plate Compactor [16 h]; Depth: 1.51m - 2.5m |  |  | 0.000145557831170628 | Cons. | Z3 | Potable | Cons | CS.UNSC | HDPEs | SUB.C | Rd 02 | Pot |
| B3.33 14 13.01.0107 |  | Sand Bedding | 79.29d | 2026-02-03 A | 2026-05-20 A | B3.33 14 13.01.0103 | 100% |  |  | Labor [28.35 h]; Foreman [14.17 h]; Operator [56.7 h]; Surveyor [14.17 h]; Surveyor Helper [14.17 h]; Loader [16 h]; Water Tanker [16 h]; Dump Truck [16 h]; Plate Compactor [16 h]; Depth: 1.51m - 2.5m |  |  | 3.61452332437126E-005 | Cons. | Z3 | Potable | Cons | CS.UNSC | HDPEs | SUB.C | Rd 02 | Pot |
| B3.33 14 13.01.01011 |  | Pipe Laying (91.12% Completed) | 126.65d | 2026-04-16 A | 2026-09-15 A | B3.33 14 13.01.0107 | 100% |  |  | Labor [28.42 h]; Foreman [14.21 h]; Plumber Helper [14.21 h]; Plumber [14.21 h]; Operator [14.21 h]; Surveyor [14.21 h]; Surveyor Helper [14.21 h]; Mobile Crane [14.58 h]; Depth: 1.51m - 2.5m |  |  | 0.000327260895584966 | Cons. | Z3 | Potable | Cons | CS.UNSC | HDPEs | SUB.C | Rd 02 | Pot |
| B3.33 14 13.01.01015 |  | Embedment & Test (91.12% Completed) | 125.82d | 2026-04-18 A | 2026-09-15 A | B3.33 14 13.01.01011 FF, B3.33 14 19.01.112 SS | 100% |  |  | Labor [56.83 h]; Foreman [28.42 h]; Plumber Helper [28.42 h]; Plumber [28.42 h]; Operator [56.83 h]; Surveyor [28.42 h]; Surveyor Helper [28.42 h]; Loader [29.16 h]; Water Tanker [29.16 h]; Dump Truck [29.16 h]; Plate Compactor [29.16 h]; Roller Compactor [29.16 h]; Depth: 1.51m - 2.5m |  |  | 0.000145069382072739 | Cons. | Z3 | Potable | Cons | CS.UNSC | HDPEs | SUB.C | Rd 02 | Pot |
| B3.33 14 13.01.01019 |  | Backfilling & Warrning Tape (91.12% Completed) | 117d | 2026-04-28 A | 2026-09-15 A | B3.33 14 13.01.01015 FF | 100% |  |  | Labor [71.04 h]; Foreman [35.52 h]; Operator [142.08 h]; Surveyor [35.52 h]; Surveyor Helper [35.52 h]; Loader [36.45 h]; Water Tanker [36.45 h]; Dump Truck [36.45 h]; Plate Compactor [36.45 h]; Roller Compactor [36.45 h]; Depth: 1.51m - 2.5m |  |  | 7.27789155853129E-005 | Cons. | Z3 | Potable | Cons | CS.UNSC | HDPEs | SUB.C | Rd 02 | Pot |
| B3.33 14 13.01.01011_R |  | Pipe Laying(Rem) | 2d | 2026-10-21 | 2026-10-22 | B3.33 14 13.01.0107, B3.33 14 13.01.01011 |  | 111.32d | 0d | Labor [2.77 h]; Foreman [1.38 h]; Plumber Helper [1.38 h]; Plumber [1.38 h]; Operator [1.38 h]; Surveyor [1.38 h]; Surveyor Helper [1.38 h]; Mobile Crane [1.42 h]; Depth: 1.51m - 2.5m |  |  | 0.000327260895584966 | Cons. | Z3 | Potable | Cons | CS.UNSC | HDPEs | SUB.C | Rd 02 | Pot |
| B3.33 14 13.01.01015_R |  | Embedment & Test(Rem) | 2d | 2026-10-21 | 2026-10-22 | B3.33 14 13.01.01011_R FF, B3.33 14 19.01.112_R SS, B3.33 14 13.01.01015 |  | 111.32d | 0d | Labor [5.54 h]; Foreman [2.77 h]; Plumber Helper [2.77 h]; Plumber [2.77 h]; Operator [5.54 h]; Surveyor [2.77 h]; Surveyor Helper [2.77 h]; Loader [2.84 h]; Water Tanker [2.84 h]; Dump Truck [2.84 h]; Plate Compactor [2.84 h]; Roller Compactor [2.84 h]; Depth: 1.51m - 2.5m |  |  | 0.000145069382072739 | Cons. | Z3 | Potable | Cons | CS.UNSC | HDPEs | SUB.C | Rd 02 | Pot |
| B3.33 14 13.01.01019_R |  | Backfilling & Warrning Tape(Rem) | 2d | 2026-10-21 | 2026-10-22 | B3.33 14 13.01.01015_R FF, B3.33 14 13.01.01019 |  | 111.32d |  | Labor [6.92 h]; Foreman [3.46 h]; Operator [13.84 h]; Surveyor [3.46 h]; Surveyor Helper [3.46 h]; Loader [3.55 h]; Water Tanker [3.55 h]; Dump Truck [3.55 h]; Plate Compactor [3.55 h]; Roller Compactor [3.55 h]; Depth: 1.51m - 2.5m |  |  | 7.27789155853129E-005 | Cons. | Z3 | Potable | Cons | CS.UNSC | HDPEs | SUB.C | Rd 02 | Pot |

| ID | WBS | Activity | Duration | Start | Finish | Predecessors | Complete | Planned start | Planned finish | Total float | Free float | Resources | Cost | Actual cost | Weight % | DMM2 Weekly Progress | DMM2 Zones | Networks & Stations | DMM2 Phases | UNASCO | Subcontractors works | Dmm2 Roads | Yellow Sheet | Networks Components |
| --- | --- | --- | --- | --- | --- | --- | --- | --- | --- | --- | --- | --- | --- | --- | --- | --- | --- | --- | --- | --- | --- | --- | --- | --- |
|  | Crossing | **Plots and Buildings Crossing** |  | 2026-04-12 | 2026-11-01 |  |  |  |  |  |  |  |  |  |  |  |  |  |  |  |  |  |  |  |
| B3.33 14 13.02.22 |  | Earthwork | 6d | 2026-04-12 A | 2026-04-19 A | B3.33 14 13.01.0103 | 100% |  |  |  |  | Labor [85.05 h]; Foreman [42.52 h]; Operator [85.05 h]; Surveyor [42.52 h]; Surveyor Helper [42.52 h]; Excavator (With Bucket) [48 h]; Water Tanker [48 h]; Dump Truck [48 h]; Plate Compactor [48 h]; Potable Plots and Buildings Crossing Connections Dia. 110 mm [0.6] | 268.67 | 268.67 | 0.000135073084407666 | Cons. | Z3 | Potable | Cons | CS.UNSC | SUB.C | Rd 02 | Pot |  |
| B3.33 14 13.02.23 |  | Sand Bedding | 3d | 2026-10-21 | 2026-10-24 | B3.33 14 13.02.22, B3.33 05 63.02.27 |  |  |  | 103.32d | 0d | Labor [31.18 h]; Foreman [15.59 h]; Operator [62.37 h]; Surveyor [15.59 h]; Surveyor Helper [15.59 h]; Loader [16 h]; Water Tanker [16 h]; Dump Truck [16 h]; Plate Compactor [16 h]; Potable Plots and Buildings Crossing Connections Dia. 110 mm [0.6] | 268.67 |  | 0.000135073084407666 | Cons. | Z3 | Potable | Cons | CS.UNSC | SUB.C | Rd 02 | Pot |  |
| B3.33 14 13.02.24 |  | Tee, Pipe (Crossing) Installation & Backfilling | 7d | 2026-10-25 | 2026-11-01 | B3.33 14 13.02.23 |  |  |  | 103.32d |  | Labor [93.55 h]; Foreman [46.78 h]; Plumber Helper [46.78 h]; Plumber [46.78 h]; Operator [93.55 h]; Surveyor [46.78 h]; Surveyor Helper [46.78 h]; Mobile Crane [48 h]; Potable Plots and Buildings Crossing Connections Dia. 110 mm [1.8] | 806.01 |  | 0.000405219253223001 | Cons. | Z3 | Potable | Cons | CS.UNSC | SUB.C | Rd 02 | Pot |  |
|  | Valves & Chambers | **Valves & Chambers** |  | 2026-06-29 | 2026-10-08 |  |  |  |  |  |  |  |  |  |  |  |  |  |  |  |  |  |  |  |
|  | GV | **Gate Valves** |  | 2026-06-29 | 2026-10-08 |  |  |  |  |  |  |  |  |  |  |  |  |  |  |  |  |  |  |  |
|  | 1 | **Gate valves dia (110) mm** |  | 2026-06-29 | 2026-10-08 |  |  |  |  |  |  |  |  |  |  |  |  |  |  |  |  |  |  |  |
| B3.33 14 19.01.112 |  | Burried Isolation Valve Installation (75.00% Completed) | 67.82d | 2026-06-29 A | 2026-09-15 A | B3.33 14 13.01.01011 SS | 100% |  |  |  |  | Labor [23.39 h]; Plumber Helper [11.69 h]; Plumber [11.69 h]; Operator [23.39 h]; Boom Truck [12 h]; POT Gate V dia 110 mm [1.24] | 2,869.28 | 2,869.28 | 0.000737657950376926 | Cons. | Z3 | Potable | Cons | CS.UNSC | SUB.C | Rd 02 | Pot | Val&Chs |
| B3.33 14 19.01.112_R |  | Burried Isolation Valve Installation(Rem) | 3d | 2026-10-01 A | 2026-10-06 A | B3.33 14 13.01.01011_R SS, B3.33 14 19.01.112 | 100% | 2026-10-14 | 2026-10-17 |  |  | Labor [7.8 h]; Plumber Helper [3.9 h]; Plumber [3.9 h]; Operator [7.8 h]; Boom Truck [4 h]; POT Gate V dia 110 mm [0.41] | 956.43 | 956.43 | 0.000737657950376926 | Cons. | Z3 | Potable | Cons | CS.UNSC | SUB.C | Rd 02 | Pot | Val&Chs |
| B3.33 14 19.01.113 |  | Spindle & Surface Box | 3d | 2026-10-04 A | 2026-10-08 A | B3.33 14 19.01.112_R, B3.33 05 63.02.39 | 100% | 2026-10-24 | 2026-10-26 |  |  | Labor [31.18 h]; Foreman [15.59 h]; Plumber Helper [15.59 h]; Plumber [15.59 h]; Operator [31.18 h]; JCB [16 h]; POT Gate V dia 110 mm [1.1] | 2,550.47 | 2,550.47 | 0.000491771966917951 | Cons. | Z3 | Potable | Cons | CS.UNSC | SUB.C | Rd 02 | Pot | Val&Chs |
|  | 2 | **Air Valves** |  | 2026-09-22 | 2026-10-08 |  |  |  |  |  |  |  |  |  |  |  |  |  |  |  |  |  |  |  |
|  | 4 | **Air valves on less than 315 mm. (In Chamber)** |  | 2026-09-22 | 2026-10-08 |  |  |  |  |  |  |  |  |  |  |  |  |  |  |  |  |  |  |  |
| B3.33 05 63.02.27 |  | Land Adjustment & Compaction | 3d | 2026-09-22 A | 2026-09-23 A | B3.33 14 13.01.0103 | 100% | 2026-10-14 | 2026-10-17 |  |  | Labor [31.18 h]; Foreman [15.59 h]; Operator [62.37 h]; Surveyor [15.59 h]; Surveyor Helper [15.59 h]; Excavator (With Bucket) [16 h]; Water Tanker [16 h]; Dump Truck [16 h]; Plate Compactor [16 h]; POT Air valve Dia. 50 mm on pipes with Dia. less than 315 mm [0.24]; Air valve chamber; on less than 315 mm Dia. pipeline [0.18] | 4,549.72 | 4,549.72 | 0.000888448059942745 | Cons. | Z3 | Potable | Cons | CS.UNSC | SUB.C | Rd 02 | Pot | Val&Chs |
| B3.33 05 63.02.25 |  | Foundations | 4d | 2026-09-24 A | 2026-09-26 A | B3.33 05 63.02.27, B3.33 14 13.02.22 | 100% | 2026-10-18 | 2026-10-21 |  |  | Labor [46.78 h]; Foreman [23.39 h]; Laboratory Officer [23.39 h]; Carpenter [23.39 h]; Steelfixer [23.39 h]; Mason [23.39 h]; POT Air valve Dia. 50 mm on pipes with Dia. less than 315 mm [0.06]; Air valve chamber; on less than 315 mm Dia. pipeline [0.24] | 5,389.08 | 5,389.08 | 0.00105235404675599 | Cons. | Z3 | Potable | Cons | CS.UNSC | SUB.C | Rd 02 | Pot | Val&Chs |
| B3.33 05 63.02.28 |  | Chambers Walls Conc Cast In Situ | 4d | 2026-09-28 A | 2026-09-30 A | B3.33 05 63.02.25 | 100% | 2026-10-22 | 2026-10-26 |  |  | Labor [46.78 h]; Foreman [23.39 h]; Laboratory Officer [23.39 h]; Carpenter [23.39 h]; Steelfixer [23.39 h]; Mason [23.39 h]; POT Air valve Dia. 50 mm on pipes with Dia. less than 315 mm [0.52]; Air valve chamber; on less than 315 mm Dia. pipeline [0.24] | 6,600.26 | 6,600.26 | 0.00128886622145969 | Cons. | Z3 | Potable | Cons | CS.UNSC | SUB.C | Rd 02 | Pot | Val&Chs |
| B3.33 05 63.02.26 |  | Chamber Curing, Finishing & Steel Cover | 5d | 2026-10-03 A | 2026-10-03 A | B3.33 05 63.02.28 | 100% | 2026-10-27 | 2026-11-01 |  |  | Labor [62.37 h]; Mason [31.18 h]; POT Air valve Dia. 50 mm on pipes with Dia. less than 315 mm [0.24]; Air valve chamber; on less than 315 mm Dia. pipeline [0.18] | 4,549.72 | 4,549.72 | 0.000888448059942745 | Cons. | Z3 | Potable | Cons | CS.UNSC | SUB.C | Rd 02 | Pot | Val&Chs |
| B3.33 05 63.02.29 |  | Valve & Fitting Installation | 4d | 2026-10-07 A | 2026-10-08 A | B3.33 05 63.02.26, B3.33 14 13.02.24 | 100% | 2026-11-02 | 2026-11-05 |  |  | Labor [62.37 h]; Plumber Helper [31.18 h]; Plumber [31.18 h]; Operator [62.37 h]; Boom Truck [32 h]; POT Air valve Dia. 50 mm on pipes with Dia. less than 315 mm [0.12]; Air valve chamber; on less than 315 mm Dia. pipeline [0.34] | 7,834.72 | 7,834.72 | 0.00152992514844024 | Cons. | Z3 | Potable | Cons | CS.UNSC | SUB.C | Rd 02 | Pot | Val&Chs |
|  | Washout Valves | **Washout Valves** |  | 2026-09-22 | 2026-10-08 |  |  |  |  |  |  |  |  |  |  |  |  |  |  |  |  |  |  |  |
|  | 4 | **Washout valves on 110-400 mm. (In Chamber)** |  | 2026-09-22 | 2026-10-08 |  |  |  |  |  |  |  |  |  |  |  |  |  |  |  |  |  |  |  |
| B3.33 05 63.01.22 |  | Land Adjustment & Compaction | 3d | 2026-09-22 A | 2026-09-23 A | B3.33 14 13.02.22 | 100% | 2026-10-14 | 2026-10-17 |  |  | Labor [31.18 h]; Foreman [15.59 h]; Operator [62.37 h]; Surveyor [15.59 h]; Surveyor Helper [15.59 h]; Excavator (With Bucket) [16 h]; Water Tanker [16 h]; Dump Truck [16 h]; Plate Compactor [16 h]; POT Wash out valve Dia. 100 mm on pipes with Dia. 110-400 mm [0.26]; Wash out valve chamber; on 110-400 mm Dia. pipeline [0.26] | 9,985.75 | 9,985.75 | 0.00162096886660874 | Cons. | Z3 | Potable | Cons | CS.UNSC | SUB.C | Rd 02 | Pot | Val&Chs |
| B3.33 05 63.01.20 |  | Foundations | 4d | 2026-09-24 A | 2026-09-26 A | B3.33 05 63.01.22 | 100% | 2026-10-18 | 2026-10-21 |  |  | Labor [46.78 h]; Foreman [23.39 h]; Laboratory Officer [23.39 h]; Carpenter [23.39 h]; Steelfixer [23.39 h]; Mason [23.39 h]; POT Wash out valve Dia. 100 mm on pipes with Dia. 110-400 mm [0.35]; Wash out valve chamber; on 110-400 mm Dia. pipeline [0.35] | 13,314.33 | 13,314.33 | 0.002161291822145 | Cons. | Z3 | Potable | Cons | CS.UNSC | SUB.C | Rd 02 | Pot | Val&Chs |
| B3.33 05 63.01.23 |  | Chambers Walls Conc Cast In Situ | 4d | 2026-09-28 A | 2026-09-30 A | B3.33 05 63.01.20 | 100% | 2026-10-22 | 2026-10-26 |  |  | Labor [46.78 h]; Foreman [23.39 h]; Laboratory Officer [23.39 h]; Carpenter [23.39 h]; Steelfixer [23.39 h]; Mason [23.39 h]; POT Wash out valve Dia. 100 mm on pipes with Dia. 110-400 mm [0.35]; Wash out valve chamber; on 110-400 mm Dia. pipeline [0.35] | 13,314.33 | 13,314.33 | 0.002161291822145 | Cons. | Z3 | Potable | Cons | CS.UNSC | SUB.C | Rd 02 | Pot | Val&Chs |
| B3.33 05 63.01.21 |  | Chamber Curing, Finishing & Steel Cover | 4d | 2026-10-03 A | 2026-10-03 A | B3.33 05 63.01.23, B3.33 14 13.01.01019_R | 100% | 2026-10-27 | 2026-10-31 |  |  | Labor [62.37 h]; Mason [31.18 h]; POT Wash out valve Dia. 100 mm on pipes with Dia. 110-400 mm [0.26]; Wash out valve chamber; on 110-400 mm Dia. pipeline [0.26] | 9,985.75 | 9,985.75 | 0.00162096886660874 | Cons. | Z3 | Potable | Cons | CS.UNSC | SUB.C | Rd 02 | Pot | Val&Chs |
| B3.33 05 63.01.24 |  | Valve & Fitting Installation | 4d | 2026-10-07 A | 2026-10-08 A | B3.33 05 63.01.21, B3.33 14 13-199, B3.33 05 63.02.29 | 100% | 2026-11-16 | 2026-11-19 |  |  | Labor [62.37 h]; Plumber Helper [31.18 h]; Plumber [31.18 h]; Operator [62.37 h]; Boom Truck [32 h]; POT Wash out valve Dia. 100 mm on pipes with Dia. 110-400 mm [0.52]; Wash out valve chamber; on 110-400 mm Dia. pipeline [0.52] | 19,971.49 | 19,971.49 | 0.00324193773321747 | Cons. | Z3 | Potable | Cons | CS.UNSC | SUB.C | Rd 02 | Pot | Val&Chs |

| ID | WBS | Activity | Duration | Start | Finish | Predecessors | Complete | Total float | Free float | Resources | Cost | Actual cost | Weight % | DMM2 Weekly Progress | DMM2 Zones | Networks & Stations | DMM2 Phases | UNASCO | Networks Components | Subcontractors works | Dmm2 Roads | Yellow Sheet |
| --- | --- | --- | --- | --- | --- | --- | --- | --- | --- | --- | --- | --- | --- | --- | --- | --- | --- | --- | --- | --- | --- | --- |
|  | Fire Fighting | **Fire Fighting Network** |  | 2026-02-03 | 2026-11-19 |  |  |  |  |  |  |  |  |  |  |  |  |  |  |  |  |  |
|  | HDPE | **HDPE Pipes** |  | 2026-02-03 | 2026-06-15 |  |  |  |  |  |  |  |  |  |  |  |  |  |  |  |  |  |
|  | ?250mm | **?250mm** |  | 2026-02-03 | 2026-06-15 |  |  |  |  |  |  |  |  |  |  |  |  |  |  |  |  |  |
|  | Depth: 0.0m - 1.5m | **Depth: 0.0m - 1.5m** |  | 2026-02-04 | 2026-06-15 |  |  |  |  |  |  |  |  |  |  |  |  |  |  |  |  |  |
| B3.1. 33 14 13-4 |  | Excavation | 31.95d | 2026-02-04 A | 2026-03-26 A | B3.33 14 13.01.0101, B3.33 14 13.01.0103 | 100% |  |  | Labor [28.35 h]; Foreman [14.17 h]; Operator [28.35 h]; Surveyor [14.17 h]; Surveyor Helper [14.17 h]; Excavator (With Bucket) [16 h]; Water Tanker [16 h]; Dump Truck [16 h]; Plate Compactor [16 h]; Depth: 0.0m - 1.5m [131.51] | 62,927.13 | 62,927.13 | 0.0135564090273793 | Cons. | Z3 | Fire | Cons | CS.UNSC | HDPEs | SUB.C | Rd 02 | Fire |
| B3.1. 33 14 13-8 |  | Sand Bedding | 30.2d | 2026-02-08 A | 2026-03-28 A | B3.1. 33 14 13-4 | 100% |  |  | Labor [28.35 h]; Foreman [14.17 h]; Operator [56.7 h]; Surveyor [14.17 h]; Surveyor Helper [14.17 h]; Loader [16 h]; Water Tanker [16 h]; Dump Truck [16 h]; Plate Compactor [16 h]; Depth: 0.0m - 1.5m [32.88] | 15,733.37 | 15,733.37 | 0.00338944352179868 | Cons. | Z3 | Fire | Cons | CS.UNSC | HDPEs | SUB.C | Rd 02 | Fire |
| B3.1. 33 14 13-12 |  | Pipe Laying | 29.7d | 2026-02-11 A | 2026-03-30 A | B3.1. 33 14 13-8 | 100% |  |  | Labor [28.35 h]; Foreman [14.17 h]; Plumber Helper [14.17 h]; Plumber [14.17 h]; Operator [14.17 h]; Surveyor [14.17 h]; Surveyor Helper [14.17 h]; Mobile Crane [16 h]; Depth: 0.0m - 1.5m [295.89] | 141,587.64 | 141,587.64 | 0.0305022615765573 | Cons. | Z3 | Fire | Cons | CS.UNSC | HDPEs | SUB.C | Rd 02 | Fire |
| B3.1. 33 14 13-16 |  | Embedment & Test | 3d | 2026-04-05 A | 2026-04-07 A | B3.1. 33 14 13-12, B3.33 14 19.01.128 | 100% |  |  | Labor [56.7 h]; Foreman [28.35 h]; Plumber Helper [28.35 h]; Plumber [28.35 h]; Operator [56.7 h]; Surveyor [28.35 h]; Surveyor Helper [28.35 h]; Loader [32 h]; Water Tanker [32 h]; Dump Truck [32 h]; Plate Compactor [32 h]; Roller Compactor [32 h]; Depth: 0.0m - 1.5m [131.51] | 62,927.13 | 62,927.13 | 0.0135564090273793 | Cons. | Z3 | Fire | Cons | CS.UNSC | HDPEs | SUB.C | Rd 02 | Fire |
| B3.1. 33 14 13-20 |  | Backfilling & Warrning Tape | 5d | 2026-06-09 A | 2026-06-15 A | B3.1. 33 14 13-16, B3.1. 33 14 13..19 | 100% |  |  | Labor [70.87 h]; Foreman [35.44 h]; Operator [141.75 h]; Surveyor [35.44 h]; Surveyor Helper [35.44 h]; Loader [40 h]; Water Tanker [40 h]; Dump Truck [40 h]; Plate Compactor [40 h]; Roller Compactor [40 h]; Depth: 0.0m - 1.5m [65.75] | 31,460.4 | 31,460.4 | 0.00677752198378195 | Cons. | Z3 | Fire | Cons | CS.UNSC | HDPEs | SUB.C | Rd 02 | Fire |
|  | Depth: 1.51m - 2.5m | **Depth: 1.51m - 2.5m** |  | 2026-02-03 | 2026-06-01 |  |  |  |  |  |  |  |  |  |  |  |  |  |  |  |  |  |
| B3.1. 33 14 13-6 |  | Excavation | 79.61d | 2026-02-03 A | 2026-05-20 A | B3.33 14 13.01.0101, B3.33 14 13.01.0103 | 100% |  |  | Labor [28.35 h]; Foreman [14.17 h]; Operator [28.35 h]; Surveyor [14.17 h]; Surveyor Helper [14.17 h]; Excavator (With Bucket) [16 h]; Water Tanker [16 h]; Dump Truck [16 h]; Plate Compactor [16 h]; Depth: 1.51m - 2.5m [8.22] | 4,294.65 | 4,294.65 | 0.000399426118713958 | Cons. | Z3 | Fire | Cons | CS.UNSC | HDPEs | SUB.C | Rd 02 | Fire |
| B3.1. 33 14 13-10 |  | Sand Bedding | 78.86d | 2026-02-07 A | 2026-05-23 A | B3.1. 33 14 13-6 | 100% |  |  | Labor [28.35 h]; Foreman [14.17 h]; Operator [56.7 h]; Surveyor [14.17 h]; Surveyor Helper [14.17 h]; Loader [16 h]; Water Tanker [16 h]; Dump Truck [16 h]; Plate Compactor [16 h]; Depth: 1.51m - 2.5m [2.06] | 1,073.66 | 1,073.66 | 9.98565296784896E-005 | Cons. | Z3 | Fire | Cons | CS.UNSC | HDPEs | SUB.C | Rd 02 | Fire |
| B3.1. 33 14 13-14 |  | Pipe Laying | 78.36d | 2026-02-10 A | 2026-05-25 A | B3.1. 33 14 13-10 | 100% |  |  | Labor [28.35 h]; Foreman [14.17 h]; Plumber Helper [14.17 h]; Plumber [14.17 h]; Operator [14.17 h]; Surveyor [14.17 h]; Surveyor Helper [14.17 h]; Mobile Crane [16 h]; Depth: 1.51m - 2.5m [18.5] | 9,662.95 | 9,662.95 | 0.00089870876710641 | Cons. | Z3 | Fire | Cons | CS.UNSC | HDPEs | SUB.C | Rd 02 | Fire |
| B3.1. 33 14 13-18 |  | Embedment & Test | 21.5d | 2026-05-02 A | 2026-05-31 A | B3.1. 33 14 13-14, B3.33 14 19.01.128 | 100% |  |  | Labor [56.7 h]; Foreman [28.35 h]; Plumber Helper [28.35 h]; Plumber [28.35 h]; Operator [56.7 h]; Surveyor [28.35 h]; Surveyor Helper [28.35 h]; Loader [32 h]; Water Tanker [32 h]; Dump Truck [32 h]; Plate Compactor [32 h]; Roller Compactor [32 h]; Depth: 1.51m - 2.5m [8.22] | 4,294.65 | 4,294.65 | 0.000399426118713958 | Cons. | Z3 | Fire | Cons | CS.UNSC | HDPEs | SUB.C | Rd 02 | Fire |
| B3.1. 33 14 13-22 |  | Backfilling & Warrning Tape | 15.25d | 2026-05-10 A | 2026-06-01 A | B3.1. 33 14 13-18, B3.33 05 63.01.34 | 100% |  |  | Labor [70.87 h]; Foreman [35.44 h]; Operator [141.75 h]; Surveyor [35.44 h]; Surveyor Helper [35.44 h]; Loader [40 h]; Water Tanker [40 h]; Dump Truck [40 h]; Plate Compactor [40 h]; Roller Compactor [40 h]; Depth: 1.51m - 2.5m [4.11] | 2,147.32 | 2,147.32 | 0.00019971305935698 | Cons. | Z3 | Fire | Cons | CS.UNSC | HDPEs | SUB.C | Rd 02 | Fire |
|  | Valves & Chambers | **Valves & Chambers** |  | 2026-04-29 | 2026-11-19 |  |  |  |  |  |  |  |  |  |  |  |  |  |  |  |  |  |
|  | GV | **Gate Valves** |  | 2026-04-29 | 2026-10-25 |  |  |  |  |  |  |  |  |  |  |  |  |  |  |  |  |  |
|  | 1 | **Gate valves dia (250) mm** |  | 2026-04-29 | 2026-10-25 |  |  |  |  |  |  |  |  |  |  |  |  |  |  |  |  |  |
| B3.33 14 19.01.128 |  | Burried Isolation Valve Installation | 21d | 2026-04-29 A | 2026-05-24 A | B3.1. 33 14 13-12, B3.1. 33 14 13-14 | 100% |  |  | Labor [28.35 h]; Plumber Helper [14.17 h]; Plumber [14.17 h]; Operator [28.35 h]; Boom Truck [16 h]; FF Gate V dia 250 mm [1.88] | 7,525.67 | 7,525.67 | 0.00144335522534034 | Cons. | Z3 | Fire | Cons | CS.UNSC | Val&Chs | SUB.C | Rd 02 | Fire |
| B3.33 14 19.01.129 |  | Spindle & Surface Box | 4d | 2026-10-21 | 2026-10-25 | B3.33 14 19.01.128 |  | 109.32d | 2.95d | Labor [31.18 h]; Foreman [15.59 h]; Plumber Helper [15.59 h]; Plumber [15.59 h]; Operator [31.18 h]; JCB [16 h]; FF Gate V dia 250 mm [1.25] | 5,017.11 |  | 0.000962236816893557 | Cons. | Z3 | Fire | Cons | CS.UNSC | Val&Chs | SUB.C | Rd 02 | Fire |
|  | 2 | **Air Valves** |  | 2026-10-21 | 2026-11-19 |  |  |  |  |  |  |  |  |  |  |  |  |  |  |  |  |  |
|  | 4 | **Air valves on less than 315 mm. (In Chamber)** |  | 2026-10-21 | 2026-11-19 |  |  |  |  |  |  |  |  |  |  |  |  |  |  |  |  |  |
| B3.33 05 63.02.57 |  | Land Adjustment & Compaction | 4d | 2026-10-21 | 2026-10-25 | B3.1. 33 14 13-18, B3.1. 33 14 13-16 |  | 61.32d | 0d | Labor [31.18 h]; Foreman [15.59 h]; Operator [62.37 h]; Surveyor [15.59 h]; Surveyor Helper [15.59 h]; Excavator (With Bucket) [16 h]; Water Tanker [16 h]; Dump Truck [16 h]; Plate Compactor [16 h]; FF Air valve Dia. 50 mm on pipes with Dia. less than 315 mm [0.18]; FF Air valve chamber; on less than 315 mm Dia. pipeline [0.18] | 4,485.6 |  | 0.000842899444995834 | Cons. | Z3 | Fire | Cons | CS.UNSC | Val&Chs | SUB.C | Rd 02 | Fire |
| B3.33 05 63.02.55 |  | Foundations | 5d | 2026-10-26 | 2026-10-31 | B3.33 05 63.02.57 |  | 61.32d | 0d | Labor [46.78 h]; Foreman [23.39 h]; Laboratory Officer [23.39 h]; Carpenter [23.39 h]; Steelfixer [23.39 h]; Mason [23.39 h]; FF Air valve Dia. 50 mm on pipes with Dia. less than 315 mm [0.18]; FF Air valve chamber; on less than 315 mm Dia. pipeline [0.24] | 5,821.24 |  | 0.00109388285056526 | Cons. | Z3 | Fire | Cons | CS.UNSC | Val&Chs | SUB.C | Rd 02 | Fire |
| B3.33 05 63.02.58 |  | Chambers Walls Conc Cast In Situ | 5d | 2026-11-01 | 2026-11-05 | B3.33 05 63.02.55 |  | 61.32d | 0d | Labor [46.78 h]; Foreman [23.39 h]; Laboratory Officer [23.39 h]; Carpenter [23.39 h]; Steelfixer [23.39 h]; Mason [23.39 h]; FF Air valve Dia. 50 mm on pipes with Dia. less than 315 mm [0.24]; FF Air valve chamber; on less than 315 mm Dia. pipeline [0.24] | 5,980.8 |  | 0.00112386592666111 | Cons. | Z3 | Fire | Cons | CS.UNSC | Val&Chs | SUB.C | Rd 02 | Fire |
| B3.33 05 63.02.56 |  | Chamber Curing, Finishing & Steel Cover | 6d | 2026-11-07 | 2026-11-12 | B3.33 05 63.02.58 |  | 61.32d | 0d | Labor [62.37 h]; Mason [31.18 h]; FF Air valve Dia. 50 mm on pipes with Dia. less than 315 mm [0.24]; FF Air valve chamber; on less than 315 mm Dia. pipeline [0.18] | 4,645.16 |  | 0.000872882521091683 | Cons. | Z3 | Fire | Cons | CS.UNSC | Val&Chs | SUB.C | Rd 02 | Fire |
| B3.33 05 63.02.59 |  | Valve & Fitting Installation | 6d | 2026-11-14 | 2026-11-19 | B3.33 05 63.02.56 |  | 61.32d | 10.41d | Labor [62.37 h]; Plumber Helper [31.18 h]; Plumber [31.18 h]; Operator [62.37 h]; Boom Truck [32 h]; FF Air valve Dia. 50 mm on pipes with Dia. less than 315 mm [0.38]; FF Air valve chamber; on less than 315 mm Dia. pipeline [0.38] | 9,344.99 |  | 0.001756040510408 | Cons. | Z3 | Fire | Cons | CS.UNSC | Val&Chs | SUB.C | Rd 02 | Fire |

| ID | WBS | Activity | Duration | Start | Finish | Predecessors | Complete | Planned start | Planned finish | Total float | Free float | Resources | Cost | Actual cost | Weight % | DMM2 Weekly Progress | DMM2 Zones | Networks & Stations | DMM2 Phases | UNASCO | Networks Components | Subcontractors works | Dmm2 Roads | Yellow Sheet |
| --- | --- | --- | --- | --- | --- | --- | --- | --- | --- | --- | --- | --- | --- | --- | --- | --- | --- | --- | --- | --- | --- | --- | --- | --- |
|  | Washout Valves | **Washout Valves** |  | 2026-10-21 | 2026-11-19 |  |  |  |  |  |  |  |  |  |  |  |  |  |  |  |  |  |  |  |
|  | 4 | **Washout valves on 110-400 mm. (In Chamber)** |  | 2026-10-21 | 2026-11-19 |  |  |  |  |  |  |  |  |  |  |  |  |  |  |  |  |  |  |  |
| B3.33 05 63.01.52 |  | Land Adjustment & Compaction | 4d | 2026-10-21 | 2026-10-25 | B3.1. 33 14 13-18, B3.1. 33 14 13-16 |  |  |  | 61.32d | 0d | Labor [31.18 h]; Foreman [15.59 h]; Operator [62.37 h]; Surveyor [15.59 h]; Surveyor Helper [15.59 h]; Excavator (With Bucket) [16 h]; Water Tanker [16 h]; Dump Truck [16 h]; Plate Compactor [16 h]; FF Wash out valve Dia. 100 mm on pipes with Dia. 110-400 mm [0.19]; FF Wash out valve chamber; on 110-400 mm Dia. pipeline [0.21] | 7,932 |  | 0.00140430274510935 | Cons. | Z3 | Fire | Cons | CS.UNSC | Val&Chs | SUB.C | Rd 02 | Fire |
| B3.33 05 63.01.50 |  | Foundations | 5d | 2026-10-26 | 2026-10-31 | B3.33 05 63.01.52 |  |  |  | 61.32d | 0d | Labor [46.78 h]; Foreman [23.39 h]; Laboratory Officer [23.39 h]; Carpenter [23.39 h]; Steelfixer [23.39 h]; Mason [23.39 h]; FF Wash out valve Dia. 100 mm on pipes with Dia. 110-400 mm [0.19]; FF Wash out valve chamber; on 110-400 mm Dia. pipeline [0.26] | 9,649.37 |  | 0.00179441315636236 | Cons. | Z3 | Fire | Cons | CS.UNSC | Val&Chs | SUB.C | Rd 02 | Fire |
| B3.33 05 63.01.53 |  | Chambers Walls Conc Cast In Situ | 5d | 2026-11-01 | 2026-11-05 | B3.33 05 63.01.50 |  |  |  | 61.32d | 0d | Labor [46.78 h]; Foreman [23.39 h]; Laboratory Officer [23.39 h]; Carpenter [23.39 h]; Steelfixer [23.39 h]; Mason [23.39 h]; FF Wash out valve Dia. 100 mm on pipes with Dia. 110-400 mm [0.25]; FF Wash out valve chamber; on 110-400 mm Dia. pipeline [0.26] | 9,870.62 |  | 0.00183639589745068 | Cons. | Z3 | Fire | Cons | CS.UNSC | Val&Chs | SUB.C | Rd 02 | Fire |
| B3.33 05 63.01.51 |  | Chamber Curing, Finishing & Steel Cover | 6d | 2026-11-07 | 2026-11-12 | B3.33 05 63.01.53 |  |  |  | 61.32d | 0d | Labor [62.37 h]; Mason [31.18 h]; FF Wash out valve Dia. 100 mm on pipes with Dia. 110-400 mm [0.25]; FF Wash out valve chamber; on 110-400 mm Dia. pipeline [0.19] | 7,621.88 |  | 0.00144628548619767 | Cons. | Z3 | Fire | Cons | CS.UNSC | Val&Chs | SUB.C | Rd 02 | Fire |
| B3.33 05 63.01.54 |  | Valve & Fitting Installation | 6d | 2026-11-14 | 2026-11-19 | B3.33 05 63.01.51 |  |  |  | 61.32d | 10.41d | Labor [62.37 h]; Plumber Helper [31.18 h]; Plumber [31.18 h]; Operator [62.37 h]; Boom Truck [32 h]; FF Wash out valve Dia. 100 mm on pipes with Dia. 110-400 mm [0.39]; FF Wash out valve chamber; on 110-400 mm Dia. pipeline [0.39] | 14,801.26 |  | 0.00280860549021868 | Cons. | Z3 | Fire | Cons | CS.UNSC | Val&Chs | SUB.C | Rd 02 | Fire |
|  | 3 | **Fire Hydrant** |  | 2026-10-21 | 2026-11-05 |  |  |  |  |  |  |  |  |  |  |  |  |  |  |  |  |  |  |  |
| B3.33 14 19.01.fh32 |  | Riser Pipe & Flanged Fittings Installation | 4d | 2026-10-21 | 2026-10-25 | B3.1. 33 14 13-14, B3.1. 33 14 13-12 |  |  |  | 99.32d | 0d | Labor [31.18 h]; Plumber Helper [15.59 h]; Welder [15.59 h]; Plumber [15.59 h]; Surveyor [15.59 h]; Surveyor Helper [15.59 h]; Welding Machine [16 h]; 3-outlet fire hydrant (2 x 2.5 inch and 1 x 4.5 inch) in the form of a separate dry vacuum cylinder [1.49] | 16,415.29 |  | 0.00314407764631429 | Cons. | Z3 | Fire | Cons | CS.UNSC | FH | SUB.C | Rd 02 | Fire |
| B3.33 14 19.01.fh31 |  | Firehydrant Fixing/Installation | 5d | 2026-10-26 | 2026-10-31 | B3.33 14 19.01.fh32 |  |  |  | 99.32d | 0d | Labor [46.78 h]; Foreman [23.39 h]; Plumber Helper [23.39 h]; Plumber [23.39 h]; Operator [46.78 h]; Surveyor [23.39 h]; Surveyor Helper [23.39 h]; JCB [24 h]; 3-outlet fire hydrant (2 x 2.5 inch and 1 x 4.5 inch) in the form of a separate dry vacuum cylinder [4.47] | 49,245.86 |  | 0.0094322329389428 | Cons. | Z3 | Fire | Cons | CS.UNSC | FH | SUB.C | Rd 02 | Fire |
| B3.33 14 19.01.fh33 |  | Backfilling & Compaction | 5d | 2026-11-01 | 2026-11-05 | B3.33 14 19.01.fh31, B3.1. 33 14 13..17 |  |  |  | 99.32d |  | Labor [77.96 h]; Foreman [38.98 h]; Operator [77.96 h]; Surveyor [38.98 h]; Surveyor Helper [38.98 h]; Loader [40 h]; Water Tanker [40 h]; Dump Truck [40 h]; Plate Compactor [40 h]; 3-outlet fire hydrant (2 x 2.5 inch and 1 x 4.5 inch) in the form of a separate dry vacuum cylinder [1.49] | 16,415.29 |  | 0.00314407764631429 | Cons. | Z3 | Fire | Cons | CS.UNSC | FH | SUB.C | Rd 02 | Fire |
|  | TSE Network | **TSE Network** |  | 2026-02-09 | 2026-12-14 |  |  |  |  |  |  |  |  |  |  |  |  |  |  |  |  |  |  |  |
|  | HDPE | **HDPE Pipes** |  | 2026-02-09 | 2026-10-27 |  |  |  |  |  |  |  |  |  |  |  |  |  |  |  |  |  |  |  |
|  | ?110mm | **?110mm** |  | 2026-02-09 | 2026-10-27 |  |  |  |  |  |  |  |  |  |  |  |  |  |  |  |  |  |  |  |
|  | Depth: 0.0m - 1.5m | **Depth: 0.0m - 1.5m** |  | 2026-02-09 | 2026-10-27 |  |  |  |  |  |  |  |  |  |  |  |  |  |  |  |  |  |  |  |
| B4.33 14 13.01-0190 |  | Excavation | 14.36d | 2026-02-09 A | 2026-03-01 A | B3.1. 33 14 13-4, B3.1. 33 14 13-6 | 100% |  |  |  |  | Labor [28.35 h]; Foreman [14.17 h]; Operator [28.35 h]; Surveyor [14.17 h]; Surveyor Helper [14.17 h]; Excavator (With Bucket) [16 h]; Water Tanker [16 h]; Dump Truck [16 h]; Plate Compactor [16 h]; Dia. 110mm 0.0m - 1.5m [83.33] | 11,999.34 | 11,999.34 | 0.00275210673788439 | Cons. | Z3 | TSE | Cons | CS.UNSC | HDPEs | SUB.C | Rd 02 | TSE |
| B4.33 14 13.01-0192 |  | Sand Bedding | 5.84d | 2026-02-19 A | 2026-03-02 A | B4.33 14 13.01-0190 | 100% |  |  |  |  | Labor [28.35 h]; Foreman [14.17 h]; Operator [56.7 h]; Surveyor [14.17 h]; Surveyor Helper [14.17 h]; Loader [16 h]; Water Tanker [16 h]; Dump Truck [16 h]; Plate Compactor [16 h]; Dia. 110mm 0.0m - 1.5m [20.83] | 2,999.84 | 2,999.84 | 0.000688026684471096 | Cons. | Z3 | TSE | Cons | CS.UNSC | HDPEs | SUB.C | Rd 02 | TSE |
| B4.33 14 13.01-0194 |  | Pipe Laying | 6.84d | 2026-02-24 A | 2026-03-07 A | B4.33 14 13.01-0192 | 100% |  |  |  |  | Labor [28.35 h]; Foreman [14.17 h]; Plumber Helper [14.17 h]; Plumber [14.17 h]; Operator [14.17 h]; Surveyor [14.17 h]; Surveyor Helper [14.17 h]; Mobile Crane [16 h]; Dia. 110mm 0.0m - 1.5m [187.5] | 26,998.52 | 26,998.52 | 0.00619224016023984 | Cons. | Z3 | TSE | Cons | CS.UNSC | HDPEs | SUB.C | Rd 02 | TSE |
| B4.33 14 13.01-0196 |  | Embedment & Test (18.77% Completed) | 158.58d | 2026-03-01 A | 2026-09-15 A | B4.33 14 13.01-0194 | 100% |  |  |  |  | Labor [11.71 h]; Foreman [5.85 h]; Plumber Helper [5.85 h]; Plumber [5.85 h]; Operator [11.71 h]; Surveyor [5.85 h]; Surveyor Helper [5.85 h]; Loader [6.01 h]; Water Tanker [6.01 h]; Dump Truck [6.01 h]; Plate Compactor [6.01 h]; Roller Compactor [6.01 h]; Dia. 110mm 0.0m - 1.5m [15.65] | 2,252.88 | 2,252.88 | 0.00275210673788439 | Cons. | Z3 | TSE | Cons | CS.UNSC | HDPEs | SUB.C | Rd 02 | TSE |
| B4.33 14 13.01-0198 |  | Backfilling & Warrning Tape (18.77% Completed) | 156.33d | 2026-03-04 A | 2026-09-15 A | B4.33 14 13.075, B4.33 14 13.01-0196 FF | 100% |  |  |  |  | Labor [14.64 h]; Foreman [7.32 h]; Operator [29.27 h]; Surveyor [7.32 h]; Surveyor Helper [7.32 h]; Loader [7.51 h]; Water Tanker [7.51 h]; Dump Truck [7.51 h]; Plate Compactor [7.51 h]; Roller Compactor [7.51 h]; Dia. 110mm 0.0m - 1.5m [7.82] | 1,126.44 | 1,126.44 | 0.00137605336894219 | Cons. | Z3 | TSE | Cons | CS.UNSC | HDPEs | SUB.C | Rd 02 | TSE |
| B4.33 14 13.01-0196_R |  | Embedment & Test(Rem) | 4.25d | 2026-10-21 | 2026-10-26 | B4.33 14 13.01-0194, B4.33 14 13.01-0196 |  |  |  | 30.07d | 0.81d | Labor [50.66 h]; Foreman [25.33 h]; Plumber Helper [25.33 h]; Plumber [25.33 h]; Operator [50.66 h]; Surveyor [25.33 h]; Surveyor Helper [25.33 h]; Loader [25.99 h]; Water Tanker [25.99 h]; Dump Truck [25.99 h]; Plate Compactor [25.99 h]; Roller Compactor [25.99 h]; Dia. 110mm 0.0m - 1.5m [67.69] | 9,746.47 |  | 0.00275210673788439 | Cons. | Z3 | TSE | Cons | CS.UNSC | HDPEs | SUB.C | Rd 02 | TSE |
| B4.33 14 13.01-0198_R |  | Backfilling & Warrning Tape(Rem) | 5.06d | 2026-10-21 | 2026-10-27 | B3.33 05 63.02.89 FF, B4.33 14 13.075, B4.33 14 13.01-0196_R FF, B4.33 14 13.01-0198 |  |  |  | 29.26d | 0.94d | Labor [63.32 h]; Foreman [31.66 h]; Operator [126.65 h]; Surveyor [31.66 h]; Surveyor Helper [31.66 h]; Loader [32.49 h]; Water Tanker [32.49 h]; Dump Truck [32.49 h]; Plate Compactor [32.49 h]; Roller Compactor [32.49 h]; Dia. 110mm 0.0m - 1.5m [33.84] | 4,873.23 |  | 0.00137605336894219 | Cons. | Z3 | TSE | Cons | CS.UNSC | HDPEs | SUB.C | Rd 02 | TSE |
|  | ?25mm | **?25mm** |  | 2026-02-09 | 2026-10-27 |  |  |  |  |  |  |  |  |  |  |  |  |  |  |  |  |  |  |  |
|  | Depth: 0.0m - 1.5m | **Depth: 0.0m - 1.5m** |  | 2026-02-09 | 2026-10-27 |  |  |  |  |  |  |  |  |  |  |  |  |  |  |  |  |  |  |  |
| B4.33 14 13.01-199 |  | Excavation (0.00% Completed) | 172.87d | 2026-02-09 A | 2026-09-15 A | B4.33 14 13.01-0190 | 100% |  |  |  |  | Labor; Foreman; Operator; Surveyor; Surveyor Helper; Excavator (With Bucket); Water Tanker; Dump Truck; Plate Compactor; Dia. 25mm 0.0m - 1.5m |  |  | 0.0179727153618661 | Cons. | Z3 | TSE | Cons | CS.UNSC | HDPEs | SUB.C | Rd 02 | TSE |
| B4.33 14 13.01-209 |  | Sand Bedding (0.00% Completed) | 163.49d | 2026-02-21 A | 2026-09-15 A | B4.33 14 13.01-199 FF | 100% |  |  |  |  | Labor; Foreman; Operator; Surveyor; Surveyor Helper; Loader; Water Tanker; Dump Truck; Plate Compactor; Dia. 25mm 0.0m - 1.5m |  |  | 0.00449318231639435 | Cons. | Z3 | TSE | Cons | CS.UNSC | HDPEs | SUB.C | Rd 02 | TSE |
| B4.33 14 13.01-219 |  | Pipe Laying (0.00% Completed) | 161.49d | 2026-02-24 A | 2026-09-15 A | B4.33 14 13.01-209 FF, DMM2-Proc-Delv-5858 FF | 100% |  |  |  |  | Labor; Foreman; Plumber Helper; Plumber; Operator; Surveyor; Surveyor Helper; Mobile Crane; Dia. 25mm 0.0m - 1.5m |  |  | 0.0404386408475491 | Cons. | Z3 | TSE | Cons | CS.UNSC | HDPEs | SUB.C | Rd 02 | TSE |
| B4.33 14 13.01-229 |  | Embedment & Test (0.00% Completed) | 150.75d | 2026-03-13 A | 2026-09-15 A | B4.33 14 13.01-219 FF | 100% | 2026-03-14 | 2026-09-15 |  |  | Labor; Foreman; Plumber Helper; Plumber; Operator; Surveyor; Surveyor Helper; Loader; Water Tanker; Dump Truck; Plate Compactor; Roller Compactor; Dia. 25mm 0.0m - 1.5m |  |  | 0.0179727292655775 | Cons. | Z3 | TSE | Cons | CS.UNSC | HDPEs | SUB.C | Rd 02 | TSE |
| B4.33 14 13.01-239 |  | Backfilling & Warrning Tape (0.00% Completed) | 147.33d | 2026-03-18 A | 2026-09-15 A | B4.33 14 13.01-229 FF | 100% |  |  |  |  | Labor; Foreman; Operator; Surveyor; Surveyor Helper; Loader; Water Tanker; Dump Truck; Plate Compactor; Roller Compactor; Dia. 25mm 0.0m - 1.5m |  |  | 0.00898628120573082 | Cons. | Z3 | TSE | Cons | CS.UNSC | HDPEs | SUB.C | Rd 02 | TSE |
| B4.33 14 13.01-199_R |  | Excavation(Rem) | 3d | 2026-10-02 A | 2026-10-05 A | B4.33 14 13.01-0190, B4.33 14 13.01-199 | 100% | 2026-10-14 | 2026-10-17 |  |  | Labor [31.18 h]; Foreman [15.59 h]; Operator [31.18 h]; Surveyor [15.59 h]; Surveyor Helper [15.59 h]; Excavator (With Bucket) [16 h]; Water Tanker [16 h]; Dump Truck [16 h]; Plate Compactor [16 h]; Dia. 25mm 0.0m - 1.5m [2406.8] | 133,129.47 | 133,129.47 | 0.0179727153618661 | Cons. | Z3 | TSE | Cons | CS.UNSC | HDPEs | SUB.C | Rd 02 | TSE |
| B4.33 14 13.01-209_R |  | Sand Bedding(Rem) | 3d | 2026-10-21 | 2026-10-24 | B4.33 14 13.01-199_R FF, B4.33 14 13.01-209 |  |  |  | 31.32d | 0d | Labor [31.18 h]; Foreman [15.59 h]; Operator [62.37 h]; Surveyor [15.59 h]; Surveyor Helper [15.59 h]; Loader [16 h]; Water Tanker [16 h]; Dump Truck [16 h]; Plate Compactor [16 h]; Dia. 25mm 0.0m - 1.5m [601.7] | 33,282.39 |  | 0.00449318231639435 | Cons. | Z3 | TSE | Cons | CS.UNSC | HDPEs | SUB.C | Rd 02 | TSE |
| B4.33 14 13.01-219_R |  | Pipe Laying(Rem) | 3d | 2026-10-21 | 2026-10-24 | B4.33 14 13.01-209_R FF, DMM2-Proc-Delv-5858_R FF, B4.33 14 13.01-219 |  |  |  | 31.32d | 2d | Labor [31.18 h]; Foreman [15.59 h]; Plumber Helper [15.59 h]; Plumber [15.59 h]; Operator [15.59 h]; Surveyor [15.59 h]; Surveyor Helper [15.59 h]; Mobile Crane [16 h]; Dia. 25mm 0.0m - 1.5m [5415.29] | 299,541.54 |  | 0.0404386408475491 | Cons. | Z3 | TSE | Cons | CS.UNSC | HDPEs | SUB.C | Rd 02 | TSE |
| B4.33 14 13.01-229_R |  | Embedment & Test(Rem) | 5d | 2026-10-21 | 2026-10-26 | B4.33 14 13.01-219_R FF, B4.33 14 13.01-229 |  |  |  | 29.32d | 1d | Labor [62.37 h]; Foreman [31.18 h]; Plumber Helper [31.18 h]; Plumber [31.18 h]; Operator [62.37 h]; Surveyor [31.18 h]; Surveyor Helper [31.18 h]; Loader [32 h]; Water Tanker [32 h]; Dump Truck [32 h]; Plate Compactor [32 h]; Roller Compactor [32 h]; Dia. 25mm 0.0m - 1.5m [2406.8] | 133,129.57 |  | 0.0179727292655775 | Cons. | Z3 | TSE | Cons | CS.UNSC | HDPEs | SUB.C | Rd 02 | TSE |
| B4.33 14 13.01-239_R |  | Backfilling & Warrning Tape(Rem) | 6d | 2026-10-21 | 2026-10-27 | B4.33 14 13.01-229_R FF, B4.33 14 13.01-239 |  |  |  | 28.32d | 0d | Labor [77.96 h]; Foreman [38.98 h]; Operator [155.92 h]; Surveyor [38.98 h]; Surveyor Helper [38.98 h]; Loader [40 h]; Water Tanker [40 h]; Dump Truck [40 h]; Plate Compactor [40 h]; Roller Compactor [40 h]; Dia. 25mm 0.0m - 1.5m [1203.39] | 66,564.17 |  | 0.00898628120573082 | Cons. | Z3 | TSE | Cons | CS.UNSC | HDPEs | SUB.C | Rd 02 | TSE |

| ID | WBS | Activity | Duration | Start | Finish | Predecessors | Complete | Planned start | Planned finish | Total float | Free float | Resources | Cost | Actual cost | Weight % | DMM2 Weekly Progress | DMM2 Zones | Networks & Stations | DMM2 Phases | UNASCO | Networks Components | Subcontractors works | Dmm2 Roads | Yellow Sheet |
| --- | --- | --- | --- | --- | --- | --- | --- | --- | --- | --- | --- | --- | --- | --- | --- | --- | --- | --- | --- | --- | --- | --- | --- | --- |
|  | ?32mm | **?32mm** |  | 2026-02-09 | 2026-10-27 |  |  |  |  |  |  |  |  |  |  |  |  |  |  |  |  |  |  |  |
|  | Depth: 0.0m - 1.5m | **Depth: 0.0m - 1.5m** |  | 2026-02-09 | 2026-10-27 |  |  |  |  |  |  |  |  |  |  |  |  |  |  |  |  |  |  |  |
| B4.33 14 13.01-249 |  | Excavation (0.00% Completed) | 172.87d | 2026-02-09 A | 2026-09-15 A | B4.33 14 13.01-199 FF | 100% |  |  |  |  | Labor; Foreman; Operator; Surveyor; Surveyor Helper; Excavator (With Bucket); Water Tanker; Dump Truck; Plate Compactor; Dia. 32mm 0.0m - 1.5m |  |  | 0.00493365476181712 | Cons. | Z3 | TSE | Cons | CS.UNSC | HDPEs | SUB.C | Rd 02 | TSE |
| B4.33 14 13.01-259 |  | Sand Bedding (0.00% Completed) | 163.31d | 2026-02-21 A | 2026-09-15 A | B4.33 14 13.01-249 FF | 100% |  |  |  |  | Labor; Foreman; Operator; Surveyor; Surveyor Helper; Loader; Water Tanker; Dump Truck; Plate Compactor; Dia. 32mm 0.0m - 1.5m |  |  | 0.00123341369045429 | Cons. | Z3 | TSE | Cons | CS.UNSC | HDPEs | SUB.C | Rd 02 | TSE |
| B4.33 14 13.01-269 |  | Pipe Laying (0.00% Completed) | 161.31d | 2026-02-24 A | 2026-09-15 A | B4.33 14 13.01-259 FF | 100% |  |  |  |  | Labor; Foreman; Plumber Helper; Plumber; Operator; Surveyor; Surveyor Helper; Mobile Crane; Dia. 32mm 0.0m - 1.5m |  |  | 0.0111007232140886 | Cons. | Z3 | TSE | Cons | CS.UNSC | HDPEs | SUB.C | Rd 02 | TSE |
| B4.33 14 13.01-279 |  | Embedment & Test (0.00% Completed) | 109.81d | 2026-05-06 A | 2026-09-15 A | B4.33 14 13.01-269 FF | 100% |  |  |  |  | Labor; Foreman; Plumber Helper; Plumber; Operator; Surveyor; Surveyor Helper; Loader; Water Tanker; Dump Truck; Plate Compactor; Roller Compactor; Dia. 32mm 0.0m - 1.5m |  |  | 0.00493365476181712 | Cons. | Z3 | TSE | Cons | CS.UNSC | HDPEs | SUB.C | Rd 02 | TSE |
| B4.33 14 13.01-289 |  | Backfilling & Warrning Tape (0.00% Completed) | 105.81d | 2026-05-11 A | 2026-09-15 A | B4.33 14 13.01-279 FF | 100% |  |  |  |  | Labor; Foreman; Operator; Surveyor; Surveyor Helper; Loader; Water Tanker; Dump Truck; Plate Compactor; Roller Compactor; Dia. 32mm 0.0m - 1.5m |  |  | 0.00246682738090857 | Cons. | Z3 | TSE | Cons | CS.UNSC | HDPEs | SUB.C | Rd 02 | TSE |
| B4.33 14 13.01-249_R |  | Excavation(Rem) | 3d | 2026-10-03 A | 2026-10-04 A | B4.33 14 13.01-199_R FF, B4.33 14 13.01-249 | 100% | 2026-10-14 | 2026-10-17 |  |  | Labor [31.18 h]; Foreman [15.59 h]; Operator [31.18 h]; Surveyor [15.59 h]; Surveyor Helper [15.59 h]; Excavator (With Bucket) [16 h]; Water Tanker [16 h]; Dump Truck [16 h]; Plate Compactor [16 h]; Dia. 32mm 0.0m - 1.5m [696.6] | 42,812.92 | 42,812.92 | 0.00493365476181712 | Cons. | Z3 | TSE | Cons | CS.UNSC | HDPEs | SUB.C | Rd 02 | TSE |
| B4.33 14 13.01-259_R |  | Sand Bedding(Rem) | 3d | 2026-10-21 | 2026-10-24 | B4.33 14 13.01-249_R FF, B4.33 14 13.01-259 |  |  |  | 31.32d | 0d | Labor [31.18 h]; Foreman [15.59 h]; Operator [62.37 h]; Surveyor [15.59 h]; Surveyor Helper [15.59 h]; Loader [16 h]; Water Tanker [16 h]; Dump Truck [16 h]; Plate Compactor [16 h]; Dia. 32mm 0.0m - 1.5m [174.15] | 10,703.23 |  | 0.00123341369045429 | Cons. | Z3 | TSE | Cons | CS.UNSC | HDPEs | SUB.C | Rd 02 | TSE |
| B4.33 14 13.01-269_R |  | Pipe Laying(Rem) | 3d | 2026-10-21 | 2026-10-24 | B4.33 14 13.01-259_R FF, B4.33 14 13.01-269 |  |  |  | 31.32d | 2d | Labor [31.18 h]; Foreman [15.59 h]; Plumber Helper [15.59 h]; Plumber [15.59 h]; Operator [15.59 h]; Surveyor [15.59 h]; Surveyor Helper [15.59 h]; Mobile Crane [16 h]; Dia. 32mm 0.0m - 1.5m [1567.35] | 96,329.08 |  | 0.0111007232140886 | Cons. | Z3 | TSE | Cons | CS.UNSC | HDPEs | SUB.C | Rd 02 | TSE |
| B4.33 14 13.01-279_R |  | Embedment & Test(Rem) | 5d | 2026-10-21 | 2026-10-26 | B4.33 14 13.01-269_R FF, B4.33 14 13.01-279 |  |  |  | 29.32d | 1d | Labor [62.37 h]; Foreman [31.18 h]; Plumber Helper [31.18 h]; Plumber [31.18 h]; Operator [62.37 h]; Surveyor [31.18 h]; Surveyor Helper [31.18 h]; Loader [32 h]; Water Tanker [32 h]; Dump Truck [32 h]; Plate Compactor [32 h]; Roller Compactor [32 h]; Dia. 32mm 0.0m - 1.5m [696.6] | 42,812.92 |  | 0.00493365476181712 | Cons. | Z3 | TSE | Cons | CS.UNSC | HDPEs | SUB.C | Rd 02 | TSE |
| B4.33 14 13.01-289_R |  | Backfilling & Warrning Tape(Rem) | 6d | 2026-10-21 | 2026-10-27 | B4.33 14 13.01-279_R FF, B4.33 14 13.01-289 |  |  |  | 28.32d | 0d | Labor [77.96 h]; Foreman [38.98 h]; Operator [155.92 h]; Surveyor [38.98 h]; Surveyor Helper [38.98 h]; Loader [40 h]; Water Tanker [40 h]; Dump Truck [40 h]; Plate Compactor [40 h]; Roller Compactor [40 h]; Dia. 32mm 0.0m - 1.5m [348.3] | 21,406.46 |  | 0.00246682738090857 | Cons. | Z3 | TSE | Cons | CS.UNSC | HDPEs | SUB.C | Rd 02 | TSE |
|  | ?50mm | **?50mm** |  | 2026-03-24 | 2026-10-27 |  |  |  |  |  |  |  |  |  |  |  |  |  |  |  |  |  |  |  |
|  | Depth: 0.0m - 1.5m | **Depth: 0.0m - 1.5m** |  | 2026-03-24 | 2026-10-27 |  |  |  |  |  |  |  |  |  |  |  |  |  |  |  |  |  |  |  |
| B4.33 14 13.01-299 |  | Excavation (0.00% Completed) | 147d | 2026-03-24 A | 2026-09-15 A | B4.33 14 13.01-249 FF, DMM2-Proc-Delv-5878 SS | 100% |  |  |  |  | Labor; Foreman; Operator; Surveyor; Surveyor Helper; Excavator (With Bucket); Water Tanker; Dump Truck; Plate Compactor; Dia. 50mm 0.0m - 1.5m |  |  | 0.00733002431401005 | Cons. | Z3 | TSE | Cons | CS.UNSC | HDPEs | SUB.C | Rd 02 | TSE |
| B4.33 14 13.01-309 |  | Sand Bedding (0.00% Completed) | 146d | 2026-03-25 A | 2026-09-15 A | B4.33 14 13.01-299 FF | 100% |  |  |  |  | Labor; Foreman; Operator; Surveyor; Surveyor Helper; Loader; Water Tanker; Dump Truck; Plate Compactor; Dia. 50mm 0.0m - 1.5m |  |  | 0.00183250607850252 | Cons. | Z3 | TSE | Cons | CS.UNSC | HDPEs | SUB.C | Rd 02 | TSE |
| B4.33 14 13.01-319 |  | Pipe Laying (0.00% Completed) | 142d | 2026-03-30 A | 2026-09-15 A | B4.33 14 13.01-309 FF | 100% |  |  |  |  | Labor; Foreman; Plumber Helper; Plumber; Operator; Surveyor; Surveyor Helper; Mobile Crane; Dia. 50mm 0.0m - 1.5m |  |  | 0.0164925547065227 | Cons. | Z3 | TSE | Cons | CS.UNSC | HDPEs | SUB.C | Rd 02 | TSE |
| B4.33 14 13.01-329 |  | Embedment & Test (0.00% Completed) | 136d | 2026-04-06 A | 2026-09-15 A | B4.33 14 13.01-319 FF | 100% |  |  |  |  | Labor; Foreman; Plumber Helper; Plumber; Operator; Surveyor; Surveyor Helper; Loader; Water Tanker; Dump Truck; Plate Compactor; Roller Compactor; Dia. 50mm 0.0m - 1.5m |  |  | 0.00733002431401005 | Cons. | Z3 | TSE | Cons | CS.UNSC | HDPEs | SUB.C | Rd 02 | TSE |
| B4.33 14 13.01-339 |  | Backfilling & Warrning Tape (0.00% Completed) | 131d | 2026-04-12 A | 2026-09-15 A | B4.33 14 13.01-329 FF | 100% |  |  |  |  | Labor; Foreman; Operator; Surveyor; Surveyor Helper; Loader; Water Tanker; Dump Truck; Plate Compactor; Roller Compactor; Dia. 50mm 0.0m - 1.5m |  |  | 0.00366501215700505 | Cons. | Z3 | TSE | Cons | CS.UNSC | HDPEs | SUB.C | Rd 02 | TSE |
| B4.33 14 13.01-299_R |  | Excavation(Rem) | 3d | 2026-10-21 | 2026-10-24 | B4.33 14 13.01-249_R FF, DMM2-Proc-Delv-5878_R SS, B4.33 14 13.01-299 |  |  |  | 31.32d | 0d | Labor [31.18 h]; Foreman [15.59 h]; Operator [31.18 h]; Surveyor [15.59 h]; Surveyor Helper [15.59 h]; Excavator (With Bucket) [16 h]; Water Tanker [16 h]; Dump Truck [16 h]; Plate Compactor [16 h]; Dia. 50mm 0.0m - 1.5m [963.61] | 65,991.56 |  | 0.00733002431401005 | Cons. | Z3 | TSE | Cons | CS.UNSC | HDPEs | SUB.C | Rd 02 | TSE |
| B4.33 14 13.01-309_R |  | Sand Bedding(Rem) | 3d | 2026-10-21 | 2026-10-24 | B4.33 14 13.01-299_R FF, B4.33 14 13.01-309 |  |  |  | 31.32d | 0d | Labor [31.18 h]; Foreman [15.59 h]; Operator [62.37 h]; Surveyor [15.59 h]; Surveyor Helper [15.59 h]; Loader [16 h]; Water Tanker [16 h]; Dump Truck [16 h]; Plate Compactor [16 h]; Dia. 50mm 0.0m - 1.5m [240.9] | 16,497.89 |  | 0.00183250607850252 | Cons. | Z3 | TSE | Cons | CS.UNSC | HDPEs | SUB.C | Rd 02 | TSE |
| B4.33 14 13.01-319_R |  | Pipe Laying(Rem) | 3d | 2026-10-21 | 2026-10-24 | B4.33 14 13.01-309_R FF, B4.33 14 13.01-319 |  |  |  | 31.32d | 2d | Labor [31.18 h]; Foreman [15.59 h]; Plumber Helper [15.59 h]; Plumber [15.59 h]; Operator [15.59 h]; Surveyor [15.59 h]; Surveyor Helper [15.59 h]; Mobile Crane [16 h]; Dia. 50mm 0.0m - 1.5m [2168.11] | 148,481 |  | 0.0164925547065227 | Cons. | Z3 | TSE | Cons | CS.UNSC | HDPEs | SUB.C | Rd 02 | TSE |
| B4.33 14 13.01-329_R |  | Embedment & Test(Rem) | 5d | 2026-10-21 | 2026-10-26 | B4.33 14 13.01-319_R FF, B4.33 14 13.01-329 |  |  |  | 29.32d | 1d | Labor [62.37 h]; Foreman [31.18 h]; Plumber Helper [31.18 h]; Plumber [31.18 h]; Operator [62.37 h]; Surveyor [31.18 h]; Surveyor Helper [31.18 h]; Loader [32 h]; Water Tanker [32 h]; Dump Truck [32 h]; Plate Compactor [32 h]; Roller Compactor [32 h]; Dia. 50mm 0.0m - 1.5m [963.61] | 65,991.56 |  | 0.00733002431401005 | Cons. | Z3 | TSE | Cons | CS.UNSC | HDPEs | SUB.C | Rd 02 | TSE |
| B4.33 14 13.01-339_R |  | Backfilling & Warrning Tape(Rem) | 6d | 2026-10-21 | 2026-10-27 | B4.33 14 13.01-329_R FF, B4.33 14 13.01-339 |  |  |  | 28.32d | 0d | Labor [77.96 h]; Foreman [38.98 h]; Operator [155.92 h]; Surveyor [38.98 h]; Surveyor Helper [38.98 h]; Loader [40 h]; Water Tanker [40 h]; Dump Truck [40 h]; Plate Compactor [40 h]; Roller Compactor [40 h]; Dia. 50mm 0.0m - 1.5m [481.8] | 32,995.78 |  | 0.00366501215700505 | Cons. | Z3 | TSE | Cons | CS.UNSC | HDPEs | SUB.C | Rd 02 | TSE |

| ID | WBS | Activity | Duration | Start | Finish | Predecessors | Complete | Planned start | Planned finish | Total float | Free float | Resources | Cost | Actual cost | Weight % | DMM2 Weekly Progress | DMM2 Zones | Networks & Stations | DMM2 Phases | UNASCO | Networks Components | Subcontractors works | Dmm2 Roads | Yellow Sheet |
| --- | --- | --- | --- | --- | --- | --- | --- | --- | --- | --- | --- | --- | --- | --- | --- | --- | --- | --- | --- | --- | --- | --- | --- | --- |
|  | ?63mm | **?63mm** |  | 2026-06-29 | 2026-10-27 |  |  |  |  |  |  |  |  |  |  |  |  |  |  |  |  |  |  |  |
|  | Depth: 0.0m - 1.5m | **Depth: 0.0m - 1.5m** |  | 2026-06-29 | 2026-10-27 |  |  |  |  |  |  |  |  |  |  |  |  |  |  |  |  |  |  |  |
| B4.33 14 13.01-349 |  | Excavation (0.00% Completed) | 68d | 2026-06-29 A | 2026-09-15 A | B4.33 14 13.01-299 FF, B1.1.31 23 23.162 | 100% |  |  |  |  | Labor; Foreman; Operator; Surveyor; Surveyor Helper; Excavator (With Bucket); Water Tanker; Dump Truck; Plate Compactor; Dia. 63mm 0.0m - 1.5m |  |  | 0.00114112100126531 | Cons. | Z3 | TSE | Cons | CS.UNSC | HDPEs | SUB.C | Rd 02 | TSE |
| B4.33 14 13.01-359 |  | Sand Bedding (0.00% Completed) | 66d | 2026-07-01 A | 2026-09-15 A | B4.33 14 13.01-349 FF | 100% |  |  |  |  | Labor; Foreman; Operator; Surveyor; Surveyor Helper; Loader; Water Tanker; Dump Truck; Plate Compactor; Dia. 63mm 0.0m - 1.5m |  |  | 0.000285280250316327 | Cons. | Z3 | TSE | Cons | CS.UNSC | HDPEs | SUB.C | Rd 02 | TSE |
| B4.33 14 13.01-369 |  | Pipe Laying (0.00% Completed) | 64d | 2026-07-03 A | 2026-09-15 A | B4.33 14 13.01-359 FF | 100% | 2026-07-04 | 2026-09-15 |  |  | Labor; Foreman; Plumber Helper; Plumber; Operator; Surveyor; Surveyor Helper; Mobile Crane; Dia. 63mm 0.0m - 1.5m |  |  | 0.00256752225284693 | Cons. | Z3 | TSE | Cons | CS.UNSC | HDPEs | SUB.C | Rd 02 | TSE |
| B4.33 14 13.01-379 |  | Embedment & Test (0.00% Completed) | 57d | 2026-07-12 A | 2026-09-15 A | B4.33 14 13.01-369 FF, B3.33 14 19.01.138 SS | 100% |  |  |  |  | Labor; Foreman; Plumber Helper; Plumber; Operator; Surveyor; Surveyor Helper; Loader; Water Tanker; Dump Truck; Plate Compactor; Roller Compactor; Dia. 63mm 0.0m - 1.5m |  |  | 0.00114112100126531 | Cons. | Z3 | TSE | Cons | CS.UNSC | HDPEs | SUB.C | Rd 02 | TSE |
| B4.33 14 13.01-389 |  | Backfilling & Warrning Tape (0.00% Completed) | 52d | 2026-07-17 A | 2026-09-15 A | B4.33 14 13.01-289 FF, B4.33 14 13.01-379 FF | 100% | 2026-07-18 | 2026-09-15 |  |  | Labor; Foreman; Operator; Surveyor; Surveyor Helper; Loader; Water Tanker; Dump Truck; Plate Compactor; Roller Compactor; Dia. 63mm 0.0m - 1.5m |  |  | 0.000570560500632651 | Cons. | Z3 | TSE | Cons | CS.UNSC | HDPEs | SUB.C | Rd 02 | TSE |
| B4.33 14 13.01-349_R |  | Excavation(Rem) | 3d | 2026-09-22 A | 2026-09-28 A | B4.33 14 13.01-299_R FF, B1.1.31 23 23.162, B4.33 14 13.01-349 | 100% | 2026-09-16 | 2026-09-19 |  |  | Labor [31.18 h]; Foreman [15.59 h]; Operator [31.18 h]; Surveyor [15.59 h]; Surveyor Helper [15.59 h]; Excavator (With Bucket) [16 h]; Water Tanker [16 h]; Dump Truck [16 h]; Plate Compactor [16 h]; Dia. 63mm 0.0m - 1.5m [87.2] | 6,507.89 | 6,507.89 | 0.00114112100126531 | Cons. | Z3 | TSE | Cons | CS.UNSC | HDPEs | SUB.C | Rd 02 | TSE |
| B4.33 14 13.01-359_R |  | Sand Bedding(Rem) | 3d | 2026-10-21 | 2026-10-24 | B4.33 14 13.01-349_R FF, B4.33 14 13.01-359 |  |  |  | 31.32d | 0d | Labor [31.18 h]; Foreman [15.59 h]; Operator [62.37 h]; Surveyor [15.59 h]; Surveyor Helper [15.59 h]; Loader [16 h]; Water Tanker [16 h]; Dump Truck [16 h]; Plate Compactor [16 h]; Dia. 63mm 0.0m - 1.5m [21.8] | 1,626.97 |  | 0.000285280250316327 | Cons. | Z3 | TSE | Cons | CS.UNSC | HDPEs | SUB.C | Rd 02 | TSE |
| B4.33 14 13.01-369_R |  | Pipe Laying(Rem) | 3d | 2026-10-21 | 2026-10-24 | B4.33 14 13.01-359_R FF, B4.33 14 13.01-369 |  |  |  | 31.32d | 2d | Labor [31.18 h]; Foreman [15.59 h]; Plumber Helper [15.59 h]; Plumber [15.59 h]; Operator [15.59 h]; Surveyor [15.59 h]; Surveyor Helper [15.59 h]; Mobile Crane [16 h]; Dia. 63mm 0.0m - 1.5m [196.2] | 14,642.75 |  | 0.00256752225284693 | Cons. | Z3 | TSE | Cons | CS.UNSC | HDPEs | SUB.C | Rd 02 | TSE |
| B4.33 14 13.01-379_R |  | Embedment & Test(Rem) | 5d | 2026-10-21 | 2026-10-26 | B4.33 14 13.01-369_R FF, B3.33 14 19.01.138_R SS, B4.33 14 13.01-379 |  |  |  | 29.32d | 1d | Labor [62.37 h]; Foreman [31.18 h]; Plumber Helper [31.18 h]; Plumber [31.18 h]; Operator [62.37 h]; Surveyor [31.18 h]; Surveyor Helper [31.18 h]; Loader [32 h]; Water Tanker [32 h]; Dump Truck [32 h]; Plate Compactor [32 h]; Roller Compactor [32 h]; Dia. 63mm 0.0m - 1.5m [87.2] | 6,507.89 |  | 0.00114112100126531 | Cons. | Z3 | TSE | Cons | CS.UNSC | HDPEs | SUB.C | Rd 02 | TSE |
| B4.33 14 13.01-389_R |  | Backfilling & Warrning Tape(Rem) | 6d | 2026-10-21 | 2026-10-27 | B3.33 14 19.01.139 FF, B4.33 14 13.01-289_R FF, B4.33 14 13.01-379_R FF, B4.33 14 13.01-389 |  |  |  | 28.32d | 0d | Labor [77.96 h]; Foreman [38.98 h]; Operator [155.92 h]; Surveyor [38.98 h]; Surveyor Helper [38.98 h]; Loader [40 h]; Water Tanker [40 h]; Dump Truck [40 h]; Plate Compactor [40 h]; Roller Compactor [40 h]; Dia. 63mm 0.0m - 1.5m [43.6] | 3,253.94 |  | 0.000570560500632651 | Cons. | Z3 | TSE | Cons | CS.UNSC | HDPEs | SUB.C | Rd 02 | TSE |
|  | ?75mm | **?75mm** |  | 2026-07-01 | 2026-10-27 |  |  |  |  |  |  |  |  |  |  |  |  |  |  |  |  |  |  |  |
|  | Depth: 0.0m - 1.5m | **Depth: 0.0m - 1.5m** |  | 2026-07-01 | 2026-10-27 |  |  |  |  |  |  |  |  |  |  |  |  |  |  |  |  |  |  |  |
| B4.33 14 13.01-399 |  | Excavation (0.00% Completed) | 66d | 2026-07-01 A | 2026-09-15 A | B4.33 14 13.01-349 SS | 100% |  |  |  |  | Labor; Foreman; Operator; Surveyor; Surveyor Helper; Excavator (With Bucket); Water Tanker; Dump Truck; Plate Compactor; Dia. 75mm 0.0m - 1.5m |  |  | 0.000649734084239135 | Cons. | Z3 | TSE | Cons | CS.UNSC | HDPEs | SUB.C | Rd 02 | TSE |
| B4.33 14 13.01-409 |  | Sand Bedding (0.00% Completed) | 63d | 2026-07-05 A | 2026-09-15 A | B4.33 14 13.01-399 FF | 100% |  |  |  |  | Labor; Foreman; Operator; Surveyor; Surveyor Helper; Loader; Water Tanker; Dump Truck; Plate Compactor; Dia. 75mm 0.0m - 1.5m |  |  | 0.000162433521059784 | Cons. | Z3 | TSE | Cons | CS.UNSC | HDPEs | SUB.C | Rd 02 | TSE |
| B4.33 14 13.01-419 |  | Pipe Laying (0.00% Completed) | 60d | 2026-07-08 A | 2026-09-15 A | B4.33 14 13.01-409 FF | 100% |  |  |  |  | Labor; Foreman; Plumber Helper; Plumber; Operator; Surveyor; Surveyor Helper; Mobile Crane; Dia. 75mm 0.0m - 1.5m |  |  | 0.00146190168953805 | Cons. | Z3 | TSE | Cons | CS.UNSC | HDPEs | SUB.C | Rd 02 | TSE |
| B4.33 14 13.01-429 |  | Embedment & Test (0.00% Completed) | 57d | 2026-07-12 A | 2026-09-15 A | B4.33 14 13.01-419 FF, B3.33 14 19.01.138 SS | 100% |  |  |  |  | Labor; Foreman; Plumber Helper; Plumber; Operator; Surveyor; Surveyor Helper; Loader; Water Tanker; Dump Truck; Plate Compactor; Roller Compactor; Dia. 75mm 0.0m - 1.5m |  |  | 0.000649734084239135 | Cons. | Z3 | TSE | Cons | CS.UNSC | HDPEs | SUB.C | Rd 02 | TSE |
| B4.33 14 13.01-439 |  | Backfilling & Warrning Tape (0.00% Completed) | 52d | 2026-07-17 A | 2026-09-15 A | B4.33 14 13.01-429 FF | 100% | 2026-07-18 | 2026-09-15 |  |  | Labor; Foreman; Operator; Surveyor; Surveyor Helper; Loader; Water Tanker; Dump Truck; Plate Compactor; Roller Compactor; Dia. 75mm 0.0m - 1.5m |  |  | 0.000324867042119566 | Cons. | Z3 | TSE | Cons | CS.UNSC | HDPEs | SUB.C | Rd 02 | TSE |
| B4.33 14 13.01-399_R |  | Excavation(Rem) | 3d | 2026-10-21 | 2026-10-24 | B4.33 14 13.01-349_R SS, B4.33 14 13.01-399 |  |  |  | 29.32d | 0d | Labor [31.18 h]; Foreman [15.59 h]; Operator [31.18 h]; Surveyor [15.59 h]; Surveyor Helper [15.59 h]; Excavator (With Bucket) [16 h]; Water Tanker [16 h]; Dump Truck [16 h]; Plate Compactor [16 h]; Dia. 75mm 0.0m - 1.5m [28.21] | 2,179.7 |  | 0.000649734084239135 | Cons. | Z3 | TSE | Cons | CS.UNSC | HDPEs | SUB.C | Rd 02 | TSE |
| B4.33 14 13.01-409_R |  | Sand Bedding(Rem) | 3d | 2026-10-21 | 2026-10-24 | B4.33 14 13.01-399_R FF, B4.33 14 13.01-409 |  |  |  | 29.32d | 0d | Labor [31.18 h]; Foreman [15.59 h]; Operator [62.37 h]; Surveyor [15.59 h]; Surveyor Helper [15.59 h]; Loader [16 h]; Water Tanker [16 h]; Dump Truck [16 h]; Plate Compactor [16 h]; Dia. 75mm 0.0m - 1.5m [7.05] | 544.93 |  | 0.000162433521059784 | Cons. | Z3 | TSE | Cons | CS.UNSC | HDPEs | SUB.C | Rd 02 | TSE |
| B4.33 14 13.01-419_R |  | Pipe Laying(Rem) | 3d | 2026-10-21 | 2026-10-24 | B4.33 14 13.01-409_R FF, B4.33 14 13.01-419 |  |  |  | 29.32d | 0d | Labor [31.18 h]; Foreman [15.59 h]; Plumber Helper [15.59 h]; Plumber [15.59 h]; Operator [15.59 h]; Surveyor [15.59 h]; Surveyor Helper [15.59 h]; Mobile Crane [16 h]; Dia. 75mm 0.0m - 1.5m [63.48] | 4,904.33 |  | 0.00146190168953805 | Cons. | Z3 | TSE | Cons | CS.UNSC | HDPEs | SUB.C | Rd 02 | TSE |
| B4.33 14 13.01-429_R |  | Embedment & Test(Rem) | 5d | 2026-10-21 | 2026-10-26 | B4.33 14 13.01-419_R FF, B3.33 14 19.01.138_R SS, B4.33 14 13.01-429 |  |  |  | 29.32d | 1d | Labor [62.37 h]; Foreman [31.18 h]; Plumber Helper [31.18 h]; Plumber [31.18 h]; Operator [62.37 h]; Surveyor [31.18 h]; Surveyor Helper [31.18 h]; Loader [32 h]; Water Tanker [32 h]; Dump Truck [32 h]; Plate Compactor [32 h]; Roller Compactor [32 h]; Dia. 75mm 0.0m - 1.5m [28.21] | 2,179.7 |  | 0.000649734084239135 | Cons. | Z3 | TSE | Cons | CS.UNSC | HDPEs | SUB.C | Rd 02 | TSE |
| B4.33 14 13.01-439_R |  | Backfilling & Warrning Tape(Rem) | 6d | 2026-10-21 | 2026-10-27 | B4.33 14 13.01-429_R FF, B4.33 14 13.01-439 |  |  |  | 28.32d | 0d | Labor [77.96 h]; Foreman [38.98 h]; Operator [155.92 h]; Surveyor [38.98 h]; Surveyor Helper [38.98 h]; Loader [40 h]; Water Tanker [40 h]; Dump Truck [40 h]; Plate Compactor [40 h]; Roller Compactor [40 h]; Dia. 75mm 0.0m - 1.5m [14.11] | 1,089.85 |  | 0.000324867042119566 | Cons. | Z3 | TSE | Cons | CS.UNSC | HDPEs | SUB.C | Rd 02 | TSE |

| ID | WBS | Activity | Duration | Start | Finish | Predecessors | Complete | Planned start | Planned finish | Total float | Free float | Resources | Cost | Actual cost | Weight % | DMM2 Weekly Progress | DMM2 Zones | Networks & Stations | DMM2 Phases | UNASCO | Networks Components | Subcontractors works | Dmm2 Roads | Yellow Sheet |
| --- | --- | --- | --- | --- | --- | --- | --- | --- | --- | --- | --- | --- | --- | --- | --- | --- | --- | --- | --- | --- | --- | --- | --- | --- |
|  | Valves & Chambers | **Valves & Chambers** |  | 2026-07-10 | 2026-12-14 |  |  |  |  |  |  |  |  |  |  |  |  |  |  |  |  |  |  |  |
|  | GV | **Gate Valves** |  | 2026-07-10 | 2026-10-26 |  |  |  |  |  |  |  |  |  |  |  |  |  |  |  |  |  |  |  |
|  | 1 | **Gate valves dia (250) mm** |  | 2026-07-10 | 2026-10-26 |  |  |  |  |  |  |  |  |  |  |  |  |  |  |  |  |  |  |  |
| B3.33 14 19.01.138 |  | Burried Isolation Valve Installation (50.00% Completed) | 58d | 2026-07-10 A | 2026-09-15 A | B4.33 14 13.01-419 SS | 100% | 2026-07-11 | 2026-09-15 |  |  | Labor [15.59 h]; Plumber Helper [7.8 h]; Plumber [7.8 h]; Operator [15.59 h]; Boom Truck [8 h]; TSE Gate V Dia. 100 mm [2.8] | 6,486.76 | 6,486.76 | 0.00232751888367418 | Cons. | Z3 | TSE | Cons | CS.UNSC | Val&Chs | SUB.C | Rd 02 | TSE |
| B3.33 14 19.01.138_R |  | Burried Isolation Valve Installation(Rem) | 2d | 2026-10-21 | 2026-10-22 | B4.33 14 13.01-419_R SS, B3.33 14 19.01.138 |  |  |  | 29.32d | 0d | Labor [15.59 h]; Plumber Helper [7.8 h]; Plumber [7.8 h]; Operator [15.59 h]; Boom Truck [8 h]; TSE Gate V Dia. 100 mm [2.8] | 6,486.76 |  | 0.00232751888367418 | Cons. | Z3 | TSE | Cons | CS.UNSC | Val&Chs | SUB.C | Rd 02 | TSE |
| B3.33 14 19.01.139 |  | Spindle & Surface Box | 3d | 2026-10-24 | 2026-10-26 | B3.33 14 19.01.138_R |  |  |  | 29.32d | 1d | Labor [31.18 h]; Foreman [15.59 h]; Plumber Helper [15.59 h]; Plumber [15.59 h]; Operator [31.18 h]; JCB [16 h]; TSE Gate V Dia. 100 mm [2.4] | 5,565.35 |  | 0.000998452702939785 | Cons. | Z3 | TSE | Cons | CS.UNSC | Val&Chs | SUB.C | Rd 02 | TSE |
|  | 2 | **Air Valves** |  | 2026-10-22 | 2026-12-14 |  |  |  |  |  |  |  |  |  |  |  |  |  |  |  |  |  |  |  |
|  | 4 | **Air valves on less than 315 mm. (In Chamber)** |  | 2026-10-22 | 2026-12-14 |  |  |  |  |  |  |  |  |  |  |  |  |  |  |  |  |  |  |  |
| B3.33 05 63.02.92 |  | Land Adjustment & Compaction | 3d | 2026-10-22 | 2026-10-26 | B4.33 14 13.01-0190, DMM2-Proc-Delv-7490 |  |  |  | 54.27d | 0d | Labor [31.18 h]; Foreman [15.59 h]; Operator [62.37 h]; Surveyor [15.59 h]; Surveyor Helper [15.59 h]; Excavator (With Bucket) [16 h]; Water Tanker [16 h]; Dump Truck [16 h]; Plate Compactor [16 h]; TSE Air valve Dia. 50 mm on pipes with Dia. less than 315 mm [0.15] | 395.16 |  | 7.54399052530939E-005 | Cons. | Z3 | TSE | Cons | CS.UNSC | Val&Chs | SUB.C | Rd 02 | TSE |
| B3.33 05 63.02.90 |  | Foundations | 4d | 2026-10-26 | 2026-10-31 | B3.33 05 63.02.92 |  |  |  | 54.27d | 0d | Labor [46.78 h]; Foreman [23.39 h]; Laboratory Officer [23.39 h]; Carpenter [23.39 h]; Steelfixer [23.39 h]; Mason [23.39 h]; TSE Air valve Dia. 50 mm on pipes with Dia. less than 315 mm [0.1] | 276.61 |  | 5.28079336771659E-005 | Cons. | Z3 | TSE | Cons | CS.UNSC | Val&Chs | SUB.C | Rd 02 | TSE |
| B3.33 05 63.02.93 |  | Chambers Walls Conc Cast In Situ | 4d | 2026-10-31 | 2026-11-04 | B3.33 05 63.02.90 |  |  |  | 54.27d | 0d | Labor [46.78 h]; Foreman [23.39 h]; Laboratory Officer [23.39 h]; Carpenter [23.39 h]; Steelfixer [23.39 h]; Mason [23.39 h]; TSE Air valve Dia. 50 mm on pipes with Dia. less than 315 mm [0.1] | 276.61 |  | 5.28079336771659E-005 | Cons. | Z3 | TSE | Cons | CS.UNSC | Val&Chs | SUB.C | Rd 02 | TSE |
| B3.33 05 63.02.91 |  | Chamber Curing, Finishing & Steel Cover | 3d | 2026-11-04 | 2026-11-08 | B3.33 05 63.02.93 |  |  |  | 54.27d | 28.95d | Labor [62.37 h]; Mason [31.18 h]; TSE Air valve Dia. 50 mm on pipes with Dia. less than 315 mm [0.19] | 513.71 |  | 9.80718768290229E-005 | Cons. | Z3 | TSE | Cons | CS.UNSC | Val&Chs | SUB.C | Rd 02 | TSE |
| B3.33 05 63.02.94 |  | Valve & Fitting Installation | 3d | 2026-12-12 | 2026-12-14 | B3.33 05 63.02.91, B3.33 05 63.01.69 |  |  |  | 25.32d | 0d | Labor [62.37 h]; Plumber Helper [31.18 h]; Plumber [31.18 h]; Operator [62.37 h]; Boom Truck [32 h]; TSE Air valve Dia. 50 mm on pipes with Dia. less than 315 mm [0.45] | 1,185.47 |  | 0.000226319715759282 | Cons. | Z3 | TSE | Cons | CS.UNSC | Val&Chs | SUB.C | Rd 02 | TSE |
|  | Solenoid valves | **Solenoid valves** |  | 2026-10-25 | 2026-11-10 |  |  |  |  |  |  |  |  |  |  |  |  |  |  |  |  |  |  |  |
|  | Solenoid valve ?1.0 | **1 Solenoid valve ?1.0 inch with box** |  | 2026-10-25 | 2026-11-03 |  |  |  |  |  |  |  |  |  |  |  |  |  |  |  |  |  |  |  |
| B4.32 84 13.065 |  | Pull Box Installation | 7d | 2026-10-25 | 2026-11-01 | B4.33 14 13.01-419_R |  |  |  | 97.32d | 0d | Labor [93.55 h]; Plumber Helper [46.78 h]; Plumber [46.78 h]; Pull Box - 600mm (L) X 600mm (W) [1.71] | 1,848.31 |  | 0.00108411197572214 | Cons. | Z3 | TSE | Cons | CS.UNSC | Val&Chs | SUB.C | Rd 02 | TSE |
| B4.32 84 13.23 |  | Solenoid Valve Box Installation | 3d | 2026-10-25 | 2026-10-27 | B4.33 14 13.01-419_R |  |  |  | 51.32d | 0d | Labor [31.18 h]; Plumber Helper [15.59 h]; Plumber [15.59 h]; Solenoid Valve box. 1 Solenoid valve Dia. 1 inch. [1.99] | 2,838.8 |  | 0.000272525309346853 | Cons. | Z3 | TSE | Cons | CS.UNSC | Val&Chs | SUB.C | Rd 02 | TSE |
| B4.32 84 13.22 |  | Cable Laying Two-Wire Decoder (12 AWG) | 3d | 2026-10-28 | 2026-10-31 | B4.32 84 13.23 |  |  |  | 51.32d | 0d | Labor [31.18 h]; Electrician [15.59 h]; Two wire decoder cable 12 awg [350] | 4,917.51 |  | 0.00279720557352336 | Cons. | Z3 | TSE | Cons | CS.UNSC | Val&Chs | SUB.C | Rd 02 | TSE |
| B4.32 84 13.24 |  | Bubblers Installation | 3d | 2026-11-01 | 2026-11-03 | B4.32 84 13.22 |  |  |  | 51.32d | 0d | Labor [31.18 h]; Plumber Helper [15.59 h]; Plumber [15.59 h]; Bubbler [67] | 2,706.13 |  | 0.00134020323979369 | Cons. | Z3 | TSE | Cons | CS.UNSC | Val&Chs | SUB.C | Rd 02 | TSE |
|  | Solenoid valve ?1.5 | **1 Solenoid valve ?1.5 inch with box** |  | 2026-10-28 | 2026-11-07 |  |  |  |  |  |  |  |  |  |  |  |  |  |  |  |  |  |  |  |
| B4.32 84 13.26 |  | Solenoid Valve Box Installation | 3d | 2026-10-28 | 2026-10-31 | B4.32 84 13.23 |  |  |  | 51.32d | 0d | Labor [31.18 h]; Plumber Helper [15.59 h]; Plumber [15.59 h]; Solenoid Valve box. 1 Solenoid valve Dia. 1.5 inch. [5.2] | 8,434.05 |  | 0.00105531822112046 | Cons. | Z3 | TSE | Cons | CS.UNSC | Val&Chs | SUB.C | Rd 02 | TSE |
| B4.32 84 13.25 |  | Cable Laying Two-Wire Decoder (12 AWG) | 3d | 2026-11-01 | 2026-11-03 | B4.32 84 13.26 |  |  |  | 51.32d | 0d | Labor [31.18 h]; Electrician [15.59 h]; Two wire decoder cable 12 awg [350] | 4,917.51 |  | 0.00279720557352336 | Cons. | Z3 | TSE | Cons | CS.UNSC | Val&Chs | SUB.C | Rd 02 | TSE |
| B4.32 84 13.064 |  | Pull Box Installation | 3d | 2026-11-02 | 2026-11-04 | B4.32 84 13.065 |  |  |  | 97.32d | 0d | Labor [31.18 h]; Plumber Helper [15.59 h]; Plumber [15.59 h]; Pull Box - 600mm (L) X 600mm (W) [1.71] | 1,848.31 |  | 0.00108411197572214 | Cons. | Z3 | TSE | Cons | CS.UNSC | Val&Chs | SUB.C | Rd 02 | TSE |
| B4.32 84 13.27 |  | Bubblers Installation | 3d | 2026-11-04 | 2026-11-07 | B4.32 84 13.25, B4.32 84 13.24 |  |  |  | 51.32d | 0d | Labor [31.18 h]; Plumber Helper [15.59 h]; Plumber [15.59 h]; Bubbler [67] | 2,706.13 |  | 0.00134020323979369 | Cons. | Z3 | TSE | Cons | CS.UNSC | Val&Chs | SUB.C | Rd 02 | TSE |

| ID | WBS | Activity | Duration | Start | Finish | Predecessors | Complete | Remaining | Planned start | Planned finish | Total float | Free float | Resources | Cost | Actual cost | Weight % | DMM2 Weekly Progress | DMM2 Zones | Networks & Stations | DMM2 Phases | UNASCO | Networks Components | Subcontractors works | Dmm2 Roads | Yellow Sheet | All Electrical Scope |
| --- | --- | --- | --- | --- | --- | --- | --- | --- | --- | --- | --- | --- | --- | --- | --- | --- | --- | --- | --- | --- | --- | --- | --- | --- | --- | --- |
|  | Solenoid valve ?2.0 | **1 Solenoid valve ?2.0 inch with box** |  | 2026-11-01 | 2026-11-10 |  |  |  |  |  |  |  |  |  |  |  |  |  |  |  |  |  |  |  |  |  |
| B4.32 84 13.20 |  | Solenoid Valve Box Installation | 3d | 2026-11-01 | 2026-11-03 | B4.32 84 13.26 |  |  |  |  | 51.32d | 0d | Labor [31.18 h]; Plumber Helper [15.59 h]; Plumber [15.59 h]; Solenoid Valve box. 1 Solenoid valve Dia. 2.0inch. [2.79] | 5,829.6 |  | 0.000720076844983757 | Cons. | Z3 | TSE | Cons | CS.UNSC | Val&Chs | SUB.C | Rd 02 | TSE |  |
| B4.32 84 13.19 |  | Cable Laying Two-Wire Decoder (12 AWG) | 3d | 2026-11-04 | 2026-11-07 | B4.32 84 13.20 |  |  |  |  | 51.32d | 0d | Labor [31.18 h]; Electrician [15.59 h]; Two wire decoder cable 12 awg [350] | 4,917.51 |  | 0.00279720557352336 | Cons. | Z3 | TSE | Cons | CS.UNSC | Val&Chs | SUB.C | Rd 02 | TSE |  |
| B4.32 84 13.063 |  | Pull Box Installation | 3d | 2026-11-05 | 2026-11-08 | B4.32 84 13.064 |  |  |  |  | 97.32d |  | Labor [31.18 h]; Plumber Helper [15.59 h]; Plumber [15.59 h]; Pull Box - 600mm (L) X 600mm (W) [1.71] | 1,848.31 |  | 0.00108411197572214 | Cons. | Z3 | TSE | Cons | CS.UNSC | Val&Chs | SUB.C | Rd 02 | TSE |  |
| B4.32 84 13.21 |  | Bubblers Installation | 3d | 2026-11-08 | 2026-11-10 | B4.32 84 13.19, B4.32 84 13.27 |  |  |  |  | 51.32d | 0d | Labor [31.18 h]; Plumber Helper [15.59 h]; Plumber [15.59 h]; Bubbler [67] | 2,706.13 |  | 0.00134020323979369 | Cons. | Z3 | TSE | Cons | CS.UNSC | Val&Chs | SUB.C | Rd 02 | TSE |  |
|  | Dry Networks | **Dry Networks** |  | 2026-10-04 | 2026-12-19 |  |  |  |  |  |  |  |  |  |  |  |  |  |  |  |  |  |  |  |  |  |
|  | MV | **Medium Voltage Network** |  | 2026-10-04 | 2026-12-19 |  |  |  |  |  |  |  |  |  |  |  |  |  |  |  |  |  |  |  |  |  |
|  | Cables | **Cables** |  | 2026-10-04 | 2026-11-14 |  |  |  |  |  |  |  |  |  |  |  |  |  |  |  |  |  |  |  |  |  |
|  | 3C,500mm2 | **3C,500mm2** |  | 2026-10-04 | 2026-11-14 |  |  |  |  |  |  |  |  |  |  |  |  |  |  |  |  |  |  |  |  |  |
| B2.33 71 49.23.77 |  | Cable 13.8 kV Unarmored | 4d | 2026-10-04 A | 2026-10-24 | B6.33 05 40.01.400_R, B6.33 05 40.01.880, B4.33 14 13.01-439_R | 44% | 2.24d | 2026-10-21 | 2026-10-25 | 46.08d | 0d | Labor [46.78 h]; Foreman [23.39 h]; Operator [46.78 h]; Boom Truck [24 h]; Electrician [23.39 h]; Cable 13.8 kV 3Cx 500 mm² Al XLPE,/LLDPE / Unarmored [681.79] | 234,058.34 | 145,428.54 | 0.0447374191430308 | Cons. | Z3 | MV | Cons |  | Cbl&Dct | SUB.C | Rd 02 | MV | allElec |
| B2.33 71 49.23.78 |  | Straight joints cables | 3d | 2026-10-24 | 2026-10-27 | B2.33 71 49.23.77 |  |  |  |  | 91.08d | 12.76d | Labor [31.18 h]; Foreman [15.59 h]; Electrician [15.59 h]; Straight joints cables for 13.8 kv 3Cx 500 mm², Al /XLPE/LLDPE [2] | 7,880.95 |  | 0.00396214380929156 | Cons. | Z3 | MV | Cons |  | Cbl&Dct | SUB.C | Rd 02 | MV | allElec |
| B2.33 71 49.23.79 |  | Cable Termination | 3d | 2026-11-11 | 2026-11-14 | B2.33 71 49.23.78, B2.33 71 49.23.76 |  |  |  |  | 78.32d | 0d | Labor [31.18 h]; Foreman [15.59 h]; Electrician [15.59 h]; Cable Termination for 13.8 kv 3Cx 500 mm², Al /XLPE/LLDPE [0.91] | 3,058.5 |  | 0.00153766139892947 | Cons. | Z3 | MV | Cons |  | Cbl&Dct | SUB.C | Rd 02 | MV | allElec |
|  | RMU | **RMU** |  | 2026-10-28 | 2026-11-24 |  |  |  |  |  |  |  |  |  |  |  |  |  |  |  |  |  |  |  |  |  |
| B2 33 73 00.02.81 |  | Land Adjustment | 3d | 2026-10-28 | 2026-10-31 | B4.33 14 13.01-439_R, B4.33 14 13.01-389_R, B4.33 14 13.01-339_R, B4.33 14 13.01-289_R, B4.33 14 13.01-239_R, B4.33 14 13.01-0198_R |  |  |  |  | 28.32d | 0d | Labor [31.18 h]; Foreman [15.59 h]; Operator [31.18 h]; Surveyor [7.8 h]; Surveyor Helper [7.8 h]; Excavator (With Bucket) [16 h]; Water Tanker [16 h]; Dump Truck [16 h]; Roller Compactor [16 h]; RMU, 13.8KV [0.16] | 8,183.22 |  | 0.00156311216657044 | Cons. | Z3 | MV | Cons |  |  | SUB.C | Rd 02 | MV |  |
| B2 33 73 00.02.83 |  | Foundation Works & Curing | 7d | 2026-11-01 | 2026-11-08 | B2 33 73 00.02.81 |  |  |  |  | 28.32d | 0d | Labor [93.55 h]; Foreman [46.78 h]; Laboratory Officer [46.78 h]; Carpenter [46.78 h]; Steelfixer [46.78 h]; Mason [46.78 h]; RMU, 13.8KV [0.16] | 8,183.22 |  | 0.00156311216657044 | Cons. | Z3 | MV | Cons |  |  | SUB.C | Rd 02 | MV |  |
| B2 33 73 00.02.85 |  | Installation of Ring Main Unit RMU, 13.8KV | 7d | 2026-11-09 | 2026-11-16 | B2 33 73 00.02.83, DMM2-Proc-Delv-6468_R |  |  |  |  | 28.32d | 0d | Labor [93.55 h]; Operator [93.55 h]; Boom Truck [48 h]; Electrician [46.78 h]; RMU, 13.8KV [0.34] | 17,110.37 |  | 0.0032683254391927 | Cons. | Z3 | MV | Cons |  |  | SUB.C | Rd 02 | MV |  |
| B2.33 71 49.23.05 |  | Normally Open Point 13.8 KV | 7d | 2026-11-17 | 2026-11-24 | B2 33 73 00.02.85 |  |  |  |  | 28.32d | 9d | Labor [93.55 h]; Electrician [46.78 h]; Normally Open Point 13.8 KV Outdoor type [1] | 40,795.49 |  | 0.0205099198896543 | Cons. | Z3 | MV | Cons |  |  | SUB.C | Rd 02 | MV |  |
|  | Units Substation | **Units Substation** |  | 2026-11-01 | 2026-12-19 |  |  |  |  |  |  |  |  |  |  |  |  |  |  |  |  |  |  |  |  |  |
| B2 33 73 00.01.81 |  | Land Adjustment | 3d | 2026-11-01 | 2026-11-03 | B2 33 73 00.02.81 |  |  |  |  | 35.32d | 0d | Labor [31.18 h]; Foreman [15.59 h]; Operator [31.18 h]; Surveyor [7.8 h]; Surveyor Helper [7.8 h]; Excavator (With Bucket) [16 h]; Water Tanker [16 h]; Dump Truck [16 h]; Roller Compactor [16 h]; Unit Substation 13.8/0.4 K V, 500kVA [0.17] | 19,047.71 |  | 0.00325611262400754 | Cons. | Z3 | MV | Cons |  |  | SUB.C | Rd 02 | MV |  |
| B2 33 73 00.01.83 |  | Foundation Works & Curing | 7d | 2026-11-09 | 2026-11-16 | B2 33 73 00.01.81, B2 33 73 00.02.83 |  |  |  |  | 87.32d | 24.41d | Labor [93.55 h]; Foreman [46.78 h]; Laboratory Officer [46.78 h]; Carpenter [46.78 h]; Steelfixer [46.78 h]; Mason [46.78 h]; Unit Substation 13.8/0.4 K V, 500kVA [0.17] | 19,047.71 |  | 0.00325611262400754 | Cons. | Z3 | MV | Cons |  |  | SUB.C | Rd 02 | MV |  |
| B2 33 73 00.01.85 |  | Installation of Unit Substation 13.8/0.4 K V | 3d | 2026-12-15 | 2026-12-19 | B2 33 73 00.01.83, B2 33 73 00.02.85, DMM2-Proc-Delv-6458_R, B2.33 71 49.23.67, B2.33 71 49.23.102 |  |  |  |  | 62.91d | 0d | Labor [93.55 h]; Operator [93.55 h]; Boom Truck [48 h]; Electrician [46.78 h]; Unit Substation 13.8/0.4 K V, 500kVA [0.33] | 38,095.41 |  | 0.00651222524801507 | Cons. | Z3 | MV | Cons |  |  | SUB.C | Rd 02 | MV |  |
|  | LV Network | **Low Voltage Network** |  | 2026-10-06 | 2026-12-16 |  |  |  |  |  |  |  |  |  |  |  |  |  |  |  |  |  |  |  |  |  |
|  | Duct Banks | **Duct Banks** |  | 2026-10-06 | 2026-12-16 |  |  |  |  |  |  |  |  |  |  |  |  |  |  |  |  |  |  |  |  |  |
|  | 2 Way | **2 Way** |  | 2026-10-06 | 2026-12-12 |  |  |  |  |  |  |  |  |  |  |  |  |  |  |  |  |  |  |  |  |  |
| B2.33 71 00 02 103 |  | Excavation | 2d | 2026-10-06 A | 2026-10-10 A | B6.33 05 40.01.880 | 100% |  | 2026-10-21 | 2026-10-22 |  |  | Labor [31.18 h]; Foreman [15.59 h]; Operator [31.18 h]; Surveyor [15.59 h]; Surveyor Helper [15.59 h]; Excavator (With Bucket) [16 h]; Water Tanker [16 h]; Dump Truck [16 h]; Plate Compactor [16 h]; Excavation for Trench size 40cm wide and 65cm deep (for 1 cable); Duct bank for LV cables UPVC (2xDia. 110mm) [10]; SL LV Excavation for Trench size 40cm wide and 65cm deep (for 1 cable) | 2,755.67 | 2,755.67 | 0.00112258975602026 | Cons. | Z3 | LV | Cons |  | Cbl&Dct | SUB.C | Rd 02 | LV | allElec |
| B2.33 71 00 02 104 |  | Shuttering, Steel Fixing Incl. UPVC Pipe & Conc. Cast | 3d | 2026-10-10 A | 2026-10-12 A | B2.33 71 00 02 103 | 100% |  | 2026-10-24 | 2026-10-26 |  |  | Labor [46.78 h]; Laboratory Officer [23.39 h]; Carpenter [23.39 h]; Steelfixer [23.39 h]; Mason [23.39 h]; Surveyor [23.39 h]; Surveyor Helper [23.39 h]; Excavation for Trench size 40cm wide and 65cm deep (for 1 cable); Duct bank for LV cables UPVC (2xDia. 110mm) [30]; SL LV Excavation for Trench size 40cm wide and 65cm deep (for 1 cable) | 8,270.78 | 8,270.78 | 0.00336904054414932 | Cons. | Z3 | LV | Cons |  | Cbl&Dct | SUB.C | Rd 02 | LV | allElec |
| B2.33 71 00 02 105 |  | Backfilling & Warrning Tape | 4d | 2026-12-08 | 2026-12-12 | B2.33 71 00 02 104, B2.33 71 00 02 129 |  |  |  |  | 62.32d | 0d | Labor [62.37 h]; Foreman [31.18 h]; Operator [124.74 h]; Surveyor [31.18 h]; Surveyor Helper [31.18 h]; Loader [32 h]; Water Tanker [32 h]; Dump Truck [32 h]; Plate Compactor [32 h]; Roller Compactor [32 h]; Excavation for Trench size 40cm wide and 65cm deep (for 1 cable); Duct bank for LV cables UPVC (2xDia. 110mm) [10]; SL LV Excavation for Trench size 40cm wide and 65cm deep (for 1 cable) | 2,755.67 |  | 0.00112258975602026 | Cons. | Z3 | LV | Cons |  | Cbl&Dct | SUB.C | Rd 02 | LV | allElec |

| ID | WBS | Activity | Duration | Start | Finish | Predecessors | Complete | Planned start | Planned finish | Total float | Free float | Resources | Cost | Actual cost | Weight % | DMM2 Weekly Progress | DMM2 Zones | Networks & Stations | DMM2 Phases | Networks Components | All Electrical Scope | Subcontractors works | Dmm2 Roads | Yellow Sheet |
| --- | --- | --- | --- | --- | --- | --- | --- | --- | --- | --- | --- | --- | --- | --- | --- | --- | --- | --- | --- | --- | --- | --- | --- | --- |
|  | 4 Way | **4 Way** |  | 2026-10-08 | 2026-12-16 |  |  |  |  |  |  |  |  |  |  |  |  |  |  |  |  |  |  |  |
| B2.33 71 00 02 106 |  | Excavation | 2d | 2026-10-08 A | 2026-10-10 A | B2.33 71 00 02 103 | 100% | 2026-10-24 | 2026-10-25 |  |  | Labor [31.18 h]; Foreman [15.59 h]; Operator [31.18 h]; Surveyor [15.59 h]; Surveyor Helper [15.59 h]; Excavator (With Bucket) [16 h]; Water Tanker [16 h]; Dump Truck [16 h]; Plate Compactor [16 h]; Excavation for Trench size 60cm wide and 65cm deep ( for 2 cables); Duct bank for LV cables UPVC (4xDia. 110mm) [12.4]; SL LV Excavation for Trench size 60cm wide and 65cm deep ( for 2 cables) | 5,225.87 | 5,225.87 | 0.00384843522581632 | Cons. | Z3 | LV | Cons | Cbl&Dct | allElec | SUB.C | Rd 02 | LV |
| B2.33 71 00 02 107 |  | Shuttering, Steel Fixing Incl. UPVC Pipe & Conc. Cast | 3d | 2026-10-10 A | 2026-10-14 A | B2.33 71 00 02 106 | 100% | 2026-10-26 | 2026-10-28 |  |  | Labor [93.55 h]; Laboratory Officer [46.78 h]; Carpenter [46.78 h]; Steelfixer [46.78 h]; Mason [46.78 h]; Surveyor [46.78 h]; Surveyor Helper [46.78 h]; Excavation for Trench size 60cm wide and 65cm deep ( for 2 cables); Duct bank for LV cables UPVC (4xDia. 110mm) [37.2]; SL LV Excavation for Trench size 60cm wide and 65cm deep ( for 2 cables) | 15,677.61 | 15,677.61 | 0.011545305677449 | Cons. | Z3 | LV | Cons | Cbl&Dct | allElec | SUB.C | Rd 02 | LV |
| B2.33 71 00 02 108 |  | Backfilling & Warrning Tape | 4d | 2026-12-13 | 2026-12-16 | B2.33 71 00 02 107, B2.33 71 00 02 105 |  |  |  | 62.32d | 0d | Labor [77.96 h]; Foreman [38.98 h]; Operator [155.92 h]; Surveyor [38.98 h]; Surveyor Helper [38.98 h]; Loader [40 h]; Water Tanker [40 h]; Dump Truck [40 h]; Plate Compactor [40 h]; Roller Compactor [40 h]; Excavation for Trench size 60cm wide and 65cm deep ( for 2 cables); Duct bank for LV cables UPVC (4xDia. 110mm) [12.4]; SL LV Excavation for Trench size 60cm wide and 65cm deep ( for 2 cables) | 5,225.87 |  | 0.00384843522581632 | Cons. | Z3 | LV | Cons | Cbl&Dct | allElec | SUB.C | Rd 02 | LV |
|  | 6 Way | **6 Way** |  | 2026-10-11 | 2026-10-25 |  |  |  |  |  |  |  |  |  |  |  |  |  |  |  |  |  |  |  |
| B2.33 71 00 02 109 |  | Excavation | 2d | 2026-10-11 A | 2026-10-13 A | B2.33 71 00 02 106 | 100% | 2026-10-26 | 2026-10-27 |  |  | Labor [31.18 h]; Foreman [15.59 h]; Operator [31.18 h]; Surveyor [15.59 h]; Surveyor Helper [15.59 h]; Excavator (With Bucket) [16 h]; Water Tanker [16 h]; Dump Truck [16 h]; Plate Compactor [16 h]; Excavation for Trench size 90cm wide and 65cm deep ( for 3 cables); Duct bank for LV cables UPVC (6xDia. 110mm) [5]; SL LV Excavation for Trench size 90cm wide and 65cm deep ( for 3 cables) | 2,844.71 | 2,844.71 | 0.00162137899963146 | Cons. | Z3 | LV | Cons | Cbl&Dct | allElec | SUB.C | Rd 02 | LV |
| B2.33 71 00 02 110 |  | Shuttering, Steel Fixing Incl. UPVC Pipe & Conc. Cast | 3d | 2026-10-14 A | 2026-10-17 A | B2.33 71 00 02 109 | 100% | 2026-10-28 | 2026-10-31 |  |  | Labor [46.78 h]; Laboratory Officer [23.39 h]; Carpenter [23.39 h]; Steelfixer [23.39 h]; Mason [23.39 h]; Surveyor [23.39 h]; Surveyor Helper [23.39 h]; Excavation for Trench size 90cm wide and 65cm deep ( for 3 cables); Duct bank for LV cables UPVC (6xDia. 110mm) [15]; SL LV Excavation for Trench size 90cm wide and 65cm deep ( for 3 cables) | 8,534.12 | 8,534.12 | 0.00486436653485481 | Cons. | Z3 | LV | Cons | Cbl&Dct | allElec | SUB.C | Rd 02 | LV |
| B2.33 71 00 02 111 |  | Backfilling & Warrning Tape | 4d | 2026-10-21 | 2026-10-25 | B2.33 71 00 02 110 |  |  |  | 103.32d | 41d | Labor [62.37 h]; Foreman [31.18 h]; Operator [124.74 h]; Surveyor [31.18 h]; Surveyor Helper [31.18 h]; Loader [32 h]; Water Tanker [32 h]; Dump Truck [32 h]; Plate Compactor [32 h]; Roller Compactor [32 h]; Excavation for Trench size 90cm wide and 65cm deep ( for 3 cables); Duct bank for LV cables UPVC (6xDia. 110mm) [5]; SL LV Excavation for Trench size 90cm wide and 65cm deep ( for 3 cables) | 2,844.71 |  | 0.00162160853559189 | Cons. | Z3 | LV | Cons | Cbl&Dct | allElec | SUB.C | Rd 02 | LV |
|  | Cables | **Cables** |  | 2026-10-24 | 2026-10-26 |  |  |  |  |  |  |  |  |  |  |  |  |  |  |  |  |  |  |  |
|  | 4C,10+1C,10mm2 | **4C,10+1C,10mm2** |  | 2026-10-24 | 2026-10-26 |  |  |  |  |  |  |  |  |  |  |  |  |  |  |  |  |  |  |  |
| B2.33 71 00 01 11 |  | Cable Pulling | 2d | 2026-10-24 | 2026-10-26 | B2.33 71 49.23.77 |  |  |  | 46.08d | 0d | Labor [62.37 h]; Foreman [31.18 h]; Surveyor [31.18 h]; Surveyor Helper [31.18 h]; Electrician [31.18 h]; Cable, Copper 4x10mm2/ CU/XLPE/SWA/PVC + 1x10mm2 CU/PVC [1535.55] | 95,723.28 |  | 0.0182956258973869 | Cons. | Z3 | LV | Cons | Cbl&Dct | allElec | SUB.C | Rd 02 | LV |
|  | LV Panels | **0.6/1 KV Low Voltage Distribution Panels** |  | 2026-11-04 | 2026-11-18 |  |  |  |  |  |  |  |  |  |  |  |  |  |  |  |  |  |  |  |
| B2.33 71 26 24 |  | Land Adjustment | 2d | 2026-11-04 | 2026-11-05 | B2 33 73 00.01.81 |  |  |  | 35.32d | 0d | Labor [31.18 h]; Foreman [15.59 h]; Operator [31.18 h]; Surveyor [7.8 h]; Surveyor Helper [7.8 h]; Excavator (With Bucket) [16 h]; Water Tanker [16 h]; Dump Truck [16 h]; Roller Compactor [16 h]; Unit Substation 13.8/0.4 K V, 500kVA [0.17] | 19,047.71 |  | 0.00325611262400754 | Cons. | Z3 | LV | Cons | Cbl&Dct | allElec | SUB.C | Rd 02 | LV |
| B2.33 71 26 25 |  | Foundation Works & Curing | 3d | 2026-11-12 | 2026-11-15 | B2.33 71 26 24, B2.33 71 26 28 |  |  |  | 35.32d | 0d | Labor [46.78 h]; Foreman [23.39 h]; Laboratory Officer [23.39 h]; Carpenter [23.39 h]; Steelfixer [23.39 h]; Mason [23.39 h]; Unit Substation 13.8/0.4 K V, 500kVA [0.17] | 19,047.71 |  | 0.00325611262400754 | Cons. | Z3 | LV | Cons | Cbl&Dct | allElec | SUB.C | Rd 02 | LV |
| B2.33 71 26 23 |  | Installation of 0.6/1 KV Low Voltage Distribution Panels | 3d | 2026-11-16 | 2026-11-18 | B2.33 71 26 25, B2.33 71 26 26 |  |  |  | 35.32d | 0d | Labor [46.78 h]; Operator [46.78 h]; Boom Truck [24 h]; Electrician [23.39 h]; 0.6/1 KV Low Voltage Distribution Panels for Industrial UPS - Cameras [1] | 8,223.7 |  | 0.00157203882286756 | Cons. | Z3 | LV | Cons | Cbl&Dct | allElec | SUB.C | Rd 02 | LV |
|  | LV Pillars | **0.6/1 KV Low Voltage Distribution Pillars** |  | 2026-11-07 | 2026-11-15 |  |  |  |  |  |  |  |  |  |  |  |  |  |  |  |  |  |  |  |
| B2.33 71 26 27 |  | Land Adjustment | 2d | 2026-11-07 | 2026-11-08 | B2.33 71 26 24 |  |  |  | 35.32d | 0d | Labor [31.18 h]; Foreman [15.59 h]; Operator [31.18 h]; Surveyor [7.8 h]; Surveyor Helper [7.8 h]; Excavator (With Bucket) [16 h]; Water Tanker [16 h]; Dump Truck [16 h]; Roller Compactor [16 h]; RMU, 13.8KV [0.16] | 8,183.22 |  | 0.00156311216657044 | Cons. | Z3 | LV | Cons | Cbl&Dct | allElec | SUB.C | Rd 02 | LV |
| B2.33 71 26 28 |  | Foundation Works & Curing | 3d | 2026-11-09 | 2026-11-11 | B2.33 71 26 27 |  |  |  | 35.32d | 0d | Labor [46.78 h]; Foreman [23.39 h]; Laboratory Officer [23.39 h]; Carpenter [23.39 h]; Steelfixer [23.39 h]; Mason [23.39 h]; RMU, 13.8KV [0.16] | 8,183.22 |  | 0.00156311216657044 | Cons. | Z3 | LV | Cons | Cbl&Dct | allElec | SUB.C | Rd 02 | LV |
| B2.33 71 26 26 |  | Installation of 0.6/1 KV Low Voltage Distribution Pillars | 3d | 2026-11-12 | 2026-11-15 | B2.33 71 26 28 |  |  |  | 35.32d | 0d | Labor [46.78 h]; Operator [46.78 h]; Boom Truck [24 h]; Electrician [23.39 h]; 0.6/1 KV Low Voltage Distribution Pillars with 5 Outgoing feeders rated 200 Ampers Fuse type [2.33] | 30,404.52 |  | 0.00249090658552958 | Cons. | Z3 | LV | Cons | Cbl&Dct | allElec | SUB.C | Rd 02 | LV |
|  | Street Lighting | **Street Lighting** |  | 2026-10-10 | 2026-11-19 |  |  |  |  |  |  |  |  |  |  |  |  |  |  |  |  |  |  |  |
|  | Cables | **Cables** |  | 2026-11-09 | 2026-11-17 |  |  |  |  |  |  |  |  |  |  |  |  |  |  |  |  |  |  |  |
|  | 4C,10+1C,10mm2 | **4C,10+1C,10mm2** |  | 2026-11-09 | 2026-11-17 |  |  |  |  |  |  |  |  |  |  |  |  |  |  |  |  |  |  |  |
| B2.33 71 19 122 |  | Land Adjustment | 3d | 2026-11-09 | 2026-11-11 | B2.33 71 26 27 |  |  |  | 84.32d | 0d | Labor [62.37 h]; Foreman [31.18 h]; Operator [31.18 h]; Surveyor [7.8 h]; Surveyor Helper [7.8 h]; Excavator (With Bucket) [32 h]; Water Tanker [32 h]; Dump Truck [32 h]; Roller Compactor [32 h]; SL Cable, Copper 4x10mm2/ CU/XLPE/SWA/PVC + 1x10mm2 CU/PVC [416.5] | 25,963.96 |  | 0.00496258855349975 | Cons. | Z3 | SL | Cons | Cables | allElec | SUB.C | Rd 02 | SL |
| B2.33 71 49.23.142 |  | Cable Pulling | 2d | 2026-11-12 | 2026-11-14 | B2.33 71 19 122 |  |  |  | 84.32d | 0d | Labor [77.96 h]; Foreman [38.98 h]; Surveyor [38.98 h]; Surveyor Helper [38.98 h]; Electrician [38.98 h]; SL Cable, Copper 4x10mm2/ CU/XLPE/SWA/PVC + 1x10mm2 CU/PVC [1249.49] | 77,890.96 |  | 0.0148875878281853 | Cons. | Z3 | SL | Cons | Cables | allElec | SUB.C | Rd 02 | SL |
| B2.33 71 19 132 |  | Backfilling | 3d | 2026-11-15 | 2026-11-17 | B2.33 71 49.23.142, B2.33 71 16.78, B2.33 71 16.82 |  |  |  | 84.32d | 0d | Labor [93.55 h]; Foreman [46.78 h]; Operator [93.55 h]; Surveyor [46.78 h]; Surveyor Helper [46.78 h]; Loader [48 h]; Water Tanker [48 h]; Dump Truck [48 h]; Plate Compactor [48 h]; SL Cable, Copper 4x10mm2/ CU/XLPE/SWA/PVC + 1x10mm2 CU/PVC [416.5] | 25,963.96 |  | 0.00496258855349975 | Cons. | Z3 | SL | Cons | Cables | allElec | SUB.C | Rd 02 | SL |

| ID | WBS | Activity | Duration | Start | Finish | Predecessors | Complete | Remaining | Planned start | Planned finish | Total float | Free float | Resources | Cost | Actual cost | Weight % | DMM2 Weekly Progress | DMM2 Zones | Networks & Stations | DMM2 Phases | Networks Components | All Electrical Scope | Subcontractors works | Dmm2 Roads | Yellow Sheet |
| --- | --- | --- | --- | --- | --- | --- | --- | --- | --- | --- | --- | --- | --- | --- | --- | --- | --- | --- | --- | --- | --- | --- | --- | --- | --- |
|  | SL Poles | **SL Poles** |  | 2026-10-10 | 2026-10-21 |  |  |  |  |  |  |  |  |  |  |  |  |  |  |  |  |  |  |  |  |
|  | Pole (10 M Sngl Arm) | **Pole (10 M Single Arm)** |  | 2026-10-10 | 2026-10-21 |  |  |  |  |  |  |  |  |  |  |  |  |  |  |  |  |  |  |  |  |
| B2.33 71 16.67 |  | Excavation | 3d | 2026-10-10 A | 2026-10-21 | B1.2.32 11 26.01.10_R, B2.33 71 19 122 | 91% | 0.54d | 2026-11-05 | 2026-11-08 | 29.78d | 7.78d | Labor [46.78 h]; Foreman [23.39 h]; Operator [46.78 h]; Surveyor [23.39 h]; Surveyor Helper [23.39 h]; Excavator (With Bucket) [24 h]; Dump Truck [24 h]; Lighting poles with 1 arm, height of ( 10) meters [6.6] | 58,898.5 | 51,455.36 | 0.0112471278804954 | Cons. | Z3 | SL | Cons | Pls&Lmn | allElec | SUB.C | Rd 02 | SL |
| B2.33 71 16.68 |  | PC & RC Foundation | 3d | 2026-10-11 A | 2026-10-21 | B2.33 71 16.67 | 91% | 0.54d | 2026-11-09 | 2026-11-11 | 112.78d |  | Labor [77.96 h]; Foreman [38.98 h]; Laboratory Officer [38.98 h]; Carpenter [38.98 h]; Steelfixer [38.98 h]; Mason [38.98 h]; Lighting poles with 1 arm, height of ( 10) meters [6.6] | 58,898.5 | 51,455.36 | 0.0112471278804954 | Cons. | Z3 | SL | Cons | Pls&Lmn | allElec | SUB.C | Rd 02 | SL |
| B2.33 71 16.69 |  | Lighting Poles Installation Incl power box, Cables | 3d | 2026-10-12 A | 2026-10-21 | B2.33 71 16.68 | 91% | 0.75d | 2026-11-12 | 2026-11-15 | 93.57d | 16.57d | Labor [93.55 h]; Operator [93.55 h]; Mobile Crane [48 h]; Electrician [46.78 h]; Lighting poles with 1 arm, height of ( 10) meters [13.2] | 117,797 | 97,603.23 | 0.0224942557609906 | Cons. | Z3 | SL | Cons | Pls&Lmn | allElec | SUB.C | Rd 02 | SL |
| B2.26.56.19.10 |  | Lighting Luminares Inst | 3d | 2026-10-15 A | 2026-10-21 | B2.33 71 16.69, DMM2-Proc-Delv-6548_R | 91% | 0.75d | 2026-11-16 | 2026-11-18 | 112.57d |  | Labor [62.37 h]; Operator [62.37 h]; Manlift [32 h]; Street Lighting( LED), Lamp Lumen: 14560, Luminare Lumen:12700 , complete with control gear and lamp, (80) WATT. [30.11] | 27,918.13 | 19,425.14 | 0.0047113256383061 | Cons. | Z3 | SL | Cons | Pls&Lmn | allElec | SUB.C | Rd 02 | SL |
| B2.33 71 16.70 |  | Backfilling, Grouting & Chamfering | 3d | 2026-10-17 A | 2026-10-21 | B2.26.56.19.10 | 91% | 0.75d | 2026-11-19 | 2026-11-22 | 105.57d | 36.25d | Labor [93.55 h]; Foreman [46.78 h]; Mason [46.78 h]; Operator [93.55 h]; Surveyor [46.78 h]; Surveyor Helper [46.78 h]; Loader [48 h]; Water Tanker [48 h]; Dump Truck [48 h]; Plate Compactor [48 h]; Lighting poles with 1 arm, height of ( 10) meters [6.6] | 58,898.5 | 40,980.96 | 0.0112471278804954 | Cons. | Z3 | SL | Cons | Pls&Lmn | allElec | SUB.C | Rd 02 | SL |
|  | Earthing | **Earthing** |  | 2026-11-10 | 2026-11-19 |  |  |  |  |  |  |  |  |  |  |  |  |  |  |  |  |  |  |  |  |
| B2.33 71 19 35 |  | Land Adjustment | 3d | 2026-11-10 | 2026-11-14 | B2.33 71 16.69, B2.33 71 16.103 SS |  |  |  |  | 77d | 0d | Labor [46.78 h]; Foreman [23.39 h]; Operator [31.18 h]; Surveyor [7.8 h]; Surveyor Helper [7.8 h]; Excavator (With Bucket) [24 h]; Water Tanker [24 h]; Dump Truck [24 h]; Roller Compactor [24 h]; SL Earthing Including lighting poles circuits [0.45] | 904.39 |  | 0.000454679838542865 | Cons. | Z3 | SL | Cons | Cables | allElec | SUB.C | Rd 02 | SL |
| B2.33 71 19 36 |  | Earth Rods & Conduits | 3d | 2026-11-14 | 2026-11-17 | B2.33 71 19 35 |  |  |  |  | 77d | 0d | Labor [46.78 h]; Foreman [23.39 h]; Electrician [23.39 h]; SL Earthing Including lighting poles circuits [1.33] | 2,672.96 |  | 0.00134383152280447 | Cons. | Z3 | SL | Cons | Cables | allElec | SUB.C | Rd 02 | SL |
| B2.33 71 19 37 |  | Backfilling | 2d | 2026-11-17 | 2026-11-19 | B2.33 71 19 36 |  |  |  |  | 77d | 26.09d | Labor [93.55 h]; Foreman [46.78 h]; Operator [93.55 h]; Surveyor [46.78 h]; Surveyor Helper [46.78 h]; Loader [48 h]; Water Tanker [48 h]; Dump Truck [48 h]; Plate Compactor [48 h]; SL Earthing Including lighting poles circuits [0.45] | 904.39 |  | 0.000454679838542865 | Cons. | Z3 | SL | Cons | Cables | allElec | SUB.C | Rd 02 | SL |
|  | Telecommunication | **Telecommunication Network** |  | 2026-10-25 | 2026-11-23 |  |  |  |  |  |  |  |  |  |  |  |  |  |  |  |  |  |  |  |  |
|  | Ducts | **Ducts** |  | 2026-10-25 | 2026-11-15 |  |  |  |  |  |  |  |  |  |  |  |  |  |  |  |  |  |  |  |  |
|  | (6*50mm+2*32mm) | **Size (6*50mm+2*32mm) HDPE ducts** |  | 2026-10-25 | 2026-11-03 |  |  |  |  |  |  |  |  |  |  |  |  |  |  |  |  |  |  |  |  |
| B2.1.33 81 26.123 |  | Excavation | 3d | 2026-10-25 | 2026-10-28 | B6.33 05 40.01.880 |  |  |  |  | 49.96d | 0d | Labor [31.18 h]; Foreman [15.59 h]; Operator [31.18 h]; Surveyor [15.59 h]; Surveyor Helper [15.59 h]; Excavator (With Bucket) [16 h]; Water Tanker [16 h]; Dump Truck [16 h]; Plate Compactor [16 h]; (6*50mm+2*32mm) HDPE ducts [48.51] | 21,251.23 |  | 0.00243727564627162 | Cons. | Z3 | Telecom | Cons | DCT&MNH | allElec | SUB.C | Rd 02 | TEL |
| B2.1.33 81 26.124 |  | HDPE Pipe, Shuttering, Steel Fixing & Conc. Cast | 3d | 2026-10-28 | 2026-11-01 | B2.1.33 81 26.123 |  |  |  |  | 52.96d | 0d | Labor [77.96 h]; Laboratory Officer [38.98 h]; Carpenter [38.98 h]; Steelfixer [38.98 h]; Mason [38.98 h]; Surveyor [38.98 h]; Surveyor Helper [38.98 h]; (6*50mm+2*32mm) HDPE ducts [145.49] | 63,742.79 |  | 0.00731057705386804 | Cons. | Z3 | Telecom | Cons | DCT&MNH | allElec | SUB.C | Rd 02 | TEL |
| B2.1.33 81 26.125 |  | Backfilling & Warrning Tape | 2d | 2026-11-01 | 2026-11-03 | B2.1.33 81 26.124 |  |  |  |  | 52.96d | 2d | Labor [77.96 h]; Foreman [38.98 h]; Operator [155.92 h]; Surveyor [38.98 h]; Surveyor Helper [38.98 h]; Loader [40 h]; Water Tanker [40 h]; Dump Truck [40 h]; Plate Compactor [40 h]; Roller Compactor [40 h]; (6*50mm+2*32mm) HDPE ducts [48.51] | 21,251.23 |  | 0.00243727564627162 | Cons. | Z3 | Telecom | Cons | DCT&MNH | allElec | SUB.C | Rd 02 | TEL |
|  | (6*50mm) | **Size (6*50mm) HDPE ducts** |  | 2026-10-25 | 2026-11-04 |  |  |  |  |  |  |  |  |  |  |  |  |  |  |  |  |  |  |  |  |
| B2.1.33 81 26.120 |  | Excavation | 3d | 2026-10-25 | 2026-10-28 | B2.1.33 81 26.123 SS |  |  |  |  | 49.96d | 0d | Labor [31.18 h]; Foreman [15.59 h]; Operator [31.18 h]; Surveyor [15.59 h]; Surveyor Helper [15.59 h]; Excavator (With Bucket) [16 h]; Water Tanker [16 h]; Dump Truck [16 h]; Plate Compactor [16 h]; (6*50mm) HDPE ducts [125.82] | 35,460.35 |  | 0.00690393952512995 | Cons. | Z3 | Telecom | Cons | DCT&MNH | allElec | SUB.C | Rd 02 | TEL |
| B2.1.33 81 26.121 |  | HDPE Pipe, Shuttering, Steel Fixing & Conc. Cast | 3d | 2026-10-28 | 2026-11-01 | B2.1.33 81 26.120 |  |  |  |  | 54.96d | 0d | Labor [124.74 h]; Laboratory Officer [62.37 h]; Carpenter [62.37 h]; Steelfixer [62.37 h]; Mason [62.37 h]; Surveyor [62.37 h]; Surveyor Helper [62.37 h]; (6*50mm) HDPE ducts [377.45] | 106,381.04 |  | 0.0207118185753898 | Cons. | Z3 | Telecom | Cons | DCT&MNH | allElec | SUB.C | Rd 02 | TEL |
| B2.1.33 81 26.122 |  | Backfilling & Warrning Tape | 3d | 2026-11-01 | 2026-11-04 | B2.1.33 81 26.121 |  |  |  |  | 54.96d | 12.98d | Labor [77.96 h]; Foreman [38.98 h]; Operator [155.92 h]; Surveyor [38.98 h]; Surveyor Helper [38.98 h]; Loader [40 h]; Water Tanker [40 h]; Dump Truck [40 h]; Plate Compactor [40 h]; Roller Compactor [40 h]; (6*50mm) HDPE ducts [125.82] | 35,460.35 |  | 0.00690393952512995 | Cons. | Z3 | Telecom | Cons | DCT&MNH | allElec | SUB.C | Rd 02 | TEL |
|  | (6*50mm+4*32mm) | **Size (6*50mm+4*32mm) HDPE ducts** |  | 2026-10-25 | 2026-11-04 |  |  |  |  |  |  |  |  |  |  |  |  |  |  |  |  |  |  |  |  |
| B2.1.33 81 26.126 |  | Excavation | 3d | 2026-10-25 | 2026-10-28 | B2.1.33 81 26.120 SS |  |  |  |  | 49.96d | 0d | Labor [31.18 h]; Foreman [15.59 h]; Operator [31.18 h]; Surveyor [15.59 h]; Surveyor Helper [15.59 h]; Excavator (With Bucket) [16 h]; Water Tanker [16 h]; Dump Truck [16 h]; Plate Compactor [16 h]; (6*50mm+4*32mm) HDPE ducts [15] | 7,441.11 |  | 0.00340443051603132 | Cons. | Z3 | Telecom | Cons | DCT&MNH | allElec | SUB.C | Rd 02 | TEL |
| B2.1.33 81 26.127 |  | HDPE Pipe, Shuttering, Steel Fixing & Conc. Cast | 3d | 2026-10-28 | 2026-11-01 | B2.1.33 81 26.126 |  |  |  |  | 54.96d | 0d | Labor [93.55 h]; Laboratory Officer [46.78 h]; Carpenter [46.78 h]; Steelfixer [46.78 h]; Mason [46.78 h]; Surveyor [46.78 h]; Surveyor Helper [46.78 h]; (6*50mm+4*32mm) HDPE ducts [45] | 22,323.32 |  | 0.010213291548094 | Cons. | Z3 | Telecom | Cons | DCT&MNH | allElec | SUB.C | Rd 02 | TEL |
| B2.1.33 81 26.128 |  | Backfilling & Warrning Tape | 3d | 2026-11-01 | 2026-11-04 | B2.1.33 81 26.127 |  |  |  |  | 54.96d | 12.98d | Labor [77.96 h]; Foreman [38.98 h]; Operator [155.92 h]; Surveyor [38.98 h]; Surveyor Helper [38.98 h]; Loader [40 h]; Water Tanker [40 h]; Dump Truck [40 h]; Plate Compactor [40 h]; Roller Compactor [40 h]; (6*50mm+4*32mm) HDPE ducts [15] | 7,441.11 |  | 0.00340443051603132 | Cons. | Z3 | Telecom | Cons | DCT&MNH | allElec | SUB.C | Rd 02 | TEL |

| ID | WBS | Activity | Duration | Start | Finish | Predecessors | Complete | Remaining | Planned start | Planned finish | Total float | Free float | Resources | Cost | Actual cost | Weight % | DMM2 Weekly Progress | DMM2 Zones | Networks & Stations | DMM2 Phases | Networks Components | All Electrical Scope | Subcontractors works | Dmm2 Roads | Yellow Sheet |
| --- | --- | --- | --- | --- | --- | --- | --- | --- | --- | --- | --- | --- | --- | --- | --- | --- | --- | --- | --- | --- | --- | --- | --- | --- | --- |
|  | (2*32mm) | **Size (2*32mm) HDPE ducts** |  | 2026-10-28 | 2026-11-15 |  |  |  |  |  |  |  |  |  |  |  |  |  |  |  |  |  |  |  |  |
| B2.1.33 81 26.129 |  | Excavation | 2d | 2026-10-28 | 2026-10-31 | B2.1.33 81 26.126 |  |  |  |  | 49.96d | 0d | Labor [31.18 h]; Foreman [15.59 h]; Operator [31.18 h]; Surveyor [15.59 h]; Surveyor Helper [15.59 h]; Excavator (With Bucket) [16 h]; Water Tanker [16 h]; Dump Truck [16 h]; Plate Compactor [16 h]; (2*32mm) HDPE ducts [8.6] | 1,344.05 |  | 0.000194889802563824 | Cons. | Z3 | Telecom | Cons | DCT&MNH | allElec | SUB.C | Rd 02 | TEL |
| B2.1.33 81 26.130 |  | HDPE Pipe, Shuttering, Steel Fixing & Conc. Cast | 3d | 2026-10-31 | 2026-11-03 | B2.1.33 81 26.129 |  |  |  |  | 52.96d | 7.64d | Labor [62.37 h]; Laboratory Officer [31.18 h]; Carpenter [31.18 h]; Steelfixer [31.18 h]; Mason [31.18 h]; Surveyor [31.18 h]; Surveyor Helper [31.18 h]; (2*32mm) HDPE ducts [25.8] | 4,032.14 |  | 0.000584669407691468 | Cons. | Z3 | Telecom | Cons | DCT&MNH | allElec | SUB.C | Rd 02 | TEL |
| B2.1.33 81 26.131 |  | Backfilling & Warrning Tape | 3d | 2026-11-12 | 2026-11-15 | B2.1.33 81 26.130, B2.1.33 81 26.56 |  |  |  |  | 45.32d | 3.34d | Labor [62.37 h]; Foreman [31.18 h]; Operator [124.74 h]; Surveyor [31.18 h]; Surveyor Helper [31.18 h]; Loader [32 h]; Water Tanker [32 h]; Dump Truck [32 h]; Plate Compactor [32 h]; Roller Compactor [32 h]; (2*32mm) HDPE ducts [8.6] | 1,344.05 |  | 0.000194889802563824 | Cons. | Z3 | Telecom | Cons | DCT&MNH | allElec | SUB.C | Rd 02 | TEL |
|  | Manholes | **Manholes** |  | 2026-11-02 | 2026-11-10 |  |  |  |  |  |  |  |  |  |  |  |  |  |  |  |  |  |  |  |  |
|  | Manhole Type 1 | **Manhole Type 1** |  | 2026-11-02 | 2026-11-10 |  |  |  |  |  |  |  |  |  |  |  |  |  |  |  |  |  |  |  |  |
| B2.31 23 00.620 |  | Excavation | 2d | 2026-11-02 | 2026-11-04 | B2.1.33 81 26.129, B2.1.33 81 26.126, B2.1.33 81 26.120, B2.31 23 00.619 |  |  |  |  | 49.96d | 0d | Labor [31.18 h]; Foreman [15.59 h]; Operator [31.18 h]; Surveyor [15.59 h]; Surveyor Helper [15.59 h]; Excavator (With Bucket) [16 h]; Water Tanker [16 h]; Dump Truck [16 h]; Plate Compactor [16 h]; Manhole Type 1 [1.24] | 8,766.4 |  | 0.00167335317103356 | Cons. | Z3 | Telecom | Cons | DCT&MNH | allElec | SUB.C | Rd 02 | TEL |
| B2.33 71 00.248 |  | Manhole Installation | 2d | 2026-11-04 | 2026-11-07 | B2.31 23 00.620 |  |  |  |  | 77.96d | 0d | Labor [31.18 h]; Laboratory Officer [15.59 h]; Carpenter [15.59 h]; Steelfixer [15.59 h]; Mason [15.59 h]; Surveyor [15.59 h]; Surveyor Helper [15.59 h]; Manhole Type 1 [3.72] | 26,299.19 |  | 0.00502005951310069 | Cons. | Z3 | Telecom | Cons | DCT&MNH | allElec | SUB.C | Rd 02 | TEL |
| B2.33 71 00.249 |  | Backfilling & Warrning Tape | 3d | 2026-11-07 | 2026-11-10 | B2.33 71 00.248 |  |  |  |  | 77.96d | 11.64d | Labor [77.96 h]; Foreman [38.98 h]; Operator [155.92 h]; Surveyor [38.98 h]; Surveyor Helper [38.98 h]; Loader [40 h]; Water Tanker [40 h]; Dump Truck [40 h]; Plate Compactor [40 h]; Roller Compactor [40 h]; Manhole Type 1 [1.24] | 8,766.4 |  | 0.00167335317103356 | Cons. | Z3 | Telecom | Cons | DCT&MNH | allElec | SUB.C | Rd 02 | TEL |
|  | Crossing Ducts | **Road Crossing Ducts** |  | 2026-10-31 | 2026-11-23 |  |  |  |  |  |  |  |  |  |  |  |  |  |  |  |  |  |  |  |  |
|  | 1 | **Size (6X50mm+4X32mm) HDPE** |  | 2026-10-31 | 2026-11-09 |  |  |  |  |  |  |  |  |  |  |  |  |  |  |  |  |  |  |  |  |
| B2.31 23 00.619 |  | Excavation | 2d | 2026-10-31 | 2026-11-02 | B2.1.33 81 26.129 |  |  |  |  | 49.96d | 0d | Labor [31.18 h]; Foreman [15.59 h]; Operator [31.18 h]; Surveyor [15.59 h]; Surveyor Helper [15.59 h]; Excavator (With Bucket) [16 h]; Water Tanker [16 h]; Dump Truck [16 h]; Plate Compactor [16 h]; Road crossing ducts, (6*50mm+4*32mm) HDPE [11.6] | 6,427.7 |  | 0.00074145500486083 | Cons. | Z3 | Telecom | Cons | DCT&MNH | allElec | SUB.C | Rd 02 | TEL |
| B2.33 71 00.246 |  | Shuttering, Steel Fixing Incl. UPVC Pipe & Conc. Cast | 3d | 2026-11-02 | 2026-11-05 | B2.31 23 00.619 |  |  |  |  | 50.96d | 0d | Labor [46.78 h]; Laboratory Officer [23.39 h]; Carpenter [23.39 h]; Steelfixer [23.39 h]; Mason [23.39 h]; Surveyor [23.39 h]; Surveyor Helper [23.39 h]; Road crossing ducts, (6*50mm+4*32mm) HDPE [34.81] | 19,283.1 |  | 0.00222436501458249 | Cons. | Z3 | Telecom | Cons | DCT&MNH | allElec | SUB.C | Rd 02 | TEL |
| B2.33 71 00.247 |  | Backfilling & Warrning Tape | 3d | 2026-11-05 | 2026-11-09 | B2.33 71 00.246, B2.1.33 81 26.125 |  |  |  |  | 50.96d | 8.98d | Labor [62.37 h]; Foreman [31.18 h]; Operator [124.74 h]; Surveyor [31.18 h]; Surveyor Helper [31.18 h]; Loader [32 h]; Water Tanker [32 h]; Dump Truck [32 h]; Plate Compactor [32 h]; Roller Compactor [32 h]; Road crossing ducts, (6*50mm+4*32mm) HDPE [11.6] | 6,427.7 |  | 0.00074145500486083 | Cons. | Z3 | Telecom | Cons | DCT&MNH | allElec | SUB.C | Rd 02 | TEL |
|  | 2 | **Size (2*32mm) HDPE** |  | 2026-11-04 | 2026-11-23 |  |  |  |  |  |  |  |  |  |  |  |  |  |  |  |  |  |  |  |  |
| B2.31 23 00.621 |  | Excavation | 2d | 2026-11-04 | 2026-11-07 | B2.31 23 00.619, B2.31 23 00.620 |  |  |  |  | 49.96d | 0d | Labor [31.18 h]; Foreman [15.59 h]; Operator [31.18 h]; Surveyor [15.59 h]; Surveyor Helper [15.59 h]; Excavator (With Bucket) [16 h]; Water Tanker [16 h]; Dump Truck [16 h]; Plate Compactor [16 h]; Road crossing ducts, (2*32mm) HDPE [3.35] | 547.76 |  | 7.49712936569771E-005 | Cons. | Z3 | Telecom | Cons | DCT&MNH | allElec | SUB.C | Rd 02 | TEL |
| B2.33 71 00.250 |  | Shuttering, Steel Fixing Incl. UPVC Pipe & Conc. Cast | 3d | 2026-11-07 | 2026-11-10 | B2.31 23 00.621 |  |  |  |  | 49.96d | 7.98d | Labor [46.78 h]; Laboratory Officer [23.39 h]; Carpenter [23.39 h]; Steelfixer [23.39 h]; Mason [23.39 h]; Surveyor [23.39 h]; Surveyor Helper [23.39 h]; Road crossing ducts, (2*32mm) HDPE [10.04] | 1,639.89 |  | 0.000224448220761883 | Cons. | Z3 | Telecom | Cons | DCT&MNH | allElec | SUB.C | Rd 02 | TEL |
| B2.33 71 00.251 |  | Backfilling & Warrning Tape | 3d | 2026-11-19 | 2026-11-23 | B2.33 71 00.250, B2.33 71 00.265, B2.1.33 81 26.122, B2.1.33 81 26.128, B2.1.33 81 26.131, B2.33 71 00.247, B2.33 71 00.261 |  |  |  |  | 41.98d | 0d | Labor [46.78 h]; Foreman [23.39 h]; Operator [93.55 h]; Surveyor [23.39 h]; Surveyor Helper [23.39 h]; Loader [24 h]; Water Tanker [24 h]; Dump Truck [24 h]; Plate Compactor [24 h]; Roller Compactor [24 h]; Road crossing ducts, (2*32mm) HDPE [3.35] | 547.76 |  | 7.49712936569771E-005 | Cons. | Z3 | Telecom | Cons | DCT&MNH | allElec | SUB.C | Rd 02 | TEL |
|  | Earth & Road Works | **Earth & Road Works** |  | 2025-11-28 | 2026-11-29 |  |  |  |  |  |  |  |  |  |  |  |  |  |  |  |  |  |  |  |  |
|  | Earth Works | **Earth Works** |  | 2025-11-28 | 2026-02-01 |  |  |  |  |  |  |  |  |  |  |  |  |  |  |  |  |  |  |  |  |
| B1.2.31 23 16.01.10 |  | Roadway Excavation | 3d | 2025-11-28 A | 2025-12-01 A | DMM2-Eng-MS-78 | 100% |  | 2025-11-29 | 2025-12-01 |  |  | Roadway Excavation for cuttings (all types of soil) [34789.7]; Labor [28.35 h]; Foreman [14.17 h]; Operator [28.35 h]; Surveyor [14.17 h]; Surveyor Helper [14.17 h]; Excavator (With Bucket) [16 h]; Water Tanker [16 h]; Dump Truck [16 h] | 519,270.48 | 519,270.48 | 6.34093090691544E-005 | Cons. | Z3 | Roads | Cons |  |  |  | Rd 02 |  |
| B1.2.31 23 23.01.10 |  | Embankment Backfiling | 52.02d | 2025-12-02 A | 2026-02-01 A | B1.2.31 23 16.01.10 | 100% |  |  |  |  |  | Embankment backfiling [11831.6]; Labor [28.35 h]; Foreman [14.17 h]; Operator [28.35 h]; Surveyor [14.17 h]; Surveyor Helper [14.17 h]; Loader [16 h]; Water Tanker [16 h]; Dump Truck [16 h]; Plate Compactor [16 h]; Roller Compactor [16 h] | 322,033.06 | 322,033.06 | 0.0427398032975084 | Cons. | Z3 | Roads | Cons |  |  |  | Rd 02 |  |
|  | Earth Layers | **Earth Layers** |  | 2026-01-19 | 2026-10-24 |  |  |  |  |  |  |  |  |  |  |  |  |  |  |  |  |  |  |  |  |
| B1.2.32 11 13.01.10 |  | Subgrade (65.00% Completed) | 190.77d | 2026-01-19 A | 2026-09-15 A | B1.2.31 23 23.01.10 | 100% |  |  |  |  |  | Subgrade [1071.29]; Labor [60.81 h]; Foreman [30.41 h]; Operator [60.81 h]; Surveyor [30.41 h]; Surveyor Helper [30.41 h]; Grader [31.2 h]; Loader [31.2 h]; Water Tanker [31.2 h]; Dump Truck [31.2 h]; Plate Compactor [31.2 h]; Roller Compactor [31.2 h] | 31,980.19 | 31,980.19 | 0.0288511605858628 | Cons. | Z3 | Roads | Cons | Roads |  |  | Rd 02 | Sub |
| B1.2.32 11 23.01.10 |  | Aggregate Base Course (60.00% Completed) | 98d | 2026-05-20 A | 2026-09-15 A | B1.2.32 11 13.01.10 FF | 100% |  |  |  |  |  | Aggregate base course [659.26]; Labor [65.49 h]; Foreman [32.74 h]; Operator [65.49 h]; Surveyor [32.74 h]; Surveyor Helper [32.74 h]; Grader [33.6 h]; Loader [33.6 h]; Water Tanker [33.6 h]; Dump Truck [33.6 h]; Plate Compactor [33.6 h]; Roller Compactor [33.6 h] | 57,303.97 | 57,303.97 | 0.0543778017755937 | Cons. | Z3 | Roads | Cons | Roads |  |  | Rd 02 | Agg |
| B1.2.32 11 13.01.10_R |  | Subgrade(Rem) | 2.1d | 2026-09-19 A | 2026-10-24 | B1.2.31 23 23.01.10, B1.2.32 11 13.01.10 |  | 2.1d | 2026-09-16 | 2026-09-19 | 111.22d | 0.7d | Subgrade [576.85]; Labor [32.74 h]; Foreman [16.37 h]; Operator [32.74 h]; Surveyor [16.37 h]; Surveyor Helper [16.37 h]; Grader [16.8 h]; Loader [16.8 h]; Water Tanker [16.8 h]; Dump Truck [16.8 h]; Plate Compactor [16.8 h]; Roller Compactor [16.8 h] | 17,220.1 | 14,089.17 | 0.0288511605858628 | Cons. | Z3 | Roads | Cons | Roads |  |  | Rd 02 | Sub |
| B1.2.32 11 23.01.10_R |  | Aggregate Base Course(Rem) | 2.8d | 2026-10-21 | 2026-10-24 | B1.2.32 11 13.01.10_R FF, B1.2.32 11 23.01.10 |  |  |  |  | 110.52d |  | Aggregate base course [439.5]; Labor [43.66 h]; Foreman [21.83 h]; Operator [43.66 h]; Surveyor [21.83 h]; Surveyor Helper [21.83 h]; Grader [22.4 h]; Loader [22.4 h]; Water Tanker [22.4 h]; Dump Truck [22.4 h]; Plate Compactor [22.4 h]; Roller Compactor [22.4 h] | 38,202.64 |  | 0.0543778017755937 | Cons. | Z3 | Roads | Cons | Roads |  |  | Rd 02 | Agg |

| ID | WBS | Activity | Duration | Start | Finish | Predecessors | Complete | Remaining | Planned start | Planned finish | Total float | Free float | Resources | Cost | Actual cost | Weight % | DMM2 Weekly Progress | DMM2 Zones | Networks & Stations | DMM2 Phases | Networks Components | Dmm2 Roads | Yellow Sheet |
| --- | --- | --- | --- | --- | --- | --- | --- | --- | --- | --- | --- | --- | --- | --- | --- | --- | --- | --- | --- | --- | --- | --- | --- |
|  | Interlock | **Interlock** |  | 2026-10-25 | 2026-10-28 |  |  |  |  |  |  |  |  |  |  |  |  |  |  |  |  |  |  |
| B1.2.32 14 13.13.10 |  | 60mm thick - Interlocking Block Pavers | 3d | 2026-10-25 | 2026-10-28 | DMM2-Proc-Delv-7408 FS+2d |  |  |  |  | 18.82d | 0d | 60mm thick - Interlocking block pavers for sidewalks and medians [392.26]; Labor [46.78 h]; Foreman [23.39 h]; Mason [23.39 h]; Operator [46.78 h]; JCB [24 h] | 26,174.66 |  | 0.0145314831677714 | Cons. | Z3 | Roads | Cons | Roads | Rd 02 |  |
|  | Curbstone | **Curbstone** |  | 2026-10-28 | 2026-11-18 |  |  |  |  |  |  |  |  |  |  |  |  |  |  |  |  |  |  |
|  | Pre Install | **Pre-Installation** |  | 2026-10-28 | 2026-11-04 |  |  |  |  |  |  |  |  |  |  |  |  |  |  |  |  |  |  |
| B2.31 23 00.271 |  | Excavation | 2d | 2026-10-28 | 2026-10-31 | B1.2.32 14 13.13.10 |  |  |  |  | 18.82d | 0d | Curb Stone, Type K1 [63.35]; Dropped Curb, Type K3 [0.61]; Edge Curb, Type K4 [492.13]; Heel Curb, Type K5 [321.94]; Transition Curb [3.48]; Labor [62.37 h]; Foreman [31.18 h]; Operator [62.37 h]; Surveyor [31.18 h]; Surveyor Helper [31.18 h]; JCB [32 h]; Water Tanker [32 h]; Dump Truck [32 h]; Plate Compactor [32 h] | 62,908.13 |  | 0.0343453377489002 | Cons. | Z3 | Roads | Cons | Roads | Rd 02 |  |
| B1.2.32 14 13.13.210 |  | PCC | 2d | 2026-10-31 | 2026-11-02 | B2.31 23 00.271 |  |  |  |  | 28.82d | 0d | Curb Stone, Type K1 [63.35]; Dropped Curb, Type K3 [0.6]; Edge Curb, Type K4 [492.13]; Heel Curb, Type K5 [321.94]; Transition Curb [3.48]; Labor [46.78 h]; Mason [23.39 h]; Surveyor [23.39 h]; Surveyor Helper [23.39 h] | 62,907.44 |  | 0.0343449316468163 | Cons. | Z3 | Roads | Cons | Roads | Rd 02 |  |
| 32 16 13.0010 |  | Haunching | 2d | 2026-11-02 | 2026-11-04 | B1.2.32 14 13.13.210 |  |  |  |  | 28.82d | 0d | Curb Stone, Type K1 [63.35]; Dropped Curb, Type K3 [0.61]; Edge Curb, Type K4 [492.13]; Heel Curb, Type K5 [321.94]; Transition Curb [3.48]; Labor [93.55 h]; Carpenter [46.78 h]; Mason [46.78 h]; Surveyor [46.78 h]; Surveyor Helper [46.78 h] | 62,908.13 |  | 0.0343453377489002 | Cons. | Z3 | Roads | Cons | Roads | Rd 02 |  |
|  | Installation | **Installation** |  | 2026-11-04 | 2026-11-16 |  |  |  |  |  |  |  |  |  |  |  |  |  |  |  |  |  |  |
| B1.2.32 16.13.01.10 |  | Curb Stone, Type K1 | 2d | 2026-11-04 | 2026-11-07 | 32 16 13.0010 |  |  |  |  | 28.82d | 0d | Curb Stone, Type K1 [190.06]; Labor [31.18 h]; Foreman [15.59 h]; Mason [15.59 h]; Operator [31.18 h]; Surveyor [15.59 h]; Surveyor Helper [15.59 h]; JCB [16 h] | 14,351.09 |  | 0.00846446900223833 | Cons. | Z3 | Roads | Cons | Roads | Rd 02 |  |
| B1.2.32 16.13.02.9 |  | Dropped Curb, Type K3 | 2d | 2026-11-07 | 2026-11-09 | B1.2.32 16.13.01.10, 32 16 13.0010 |  |  |  |  | 28.82d | 0d | Dropped Curb, Type K3 [23.22]; Labor [31.18 h]; Foreman [15.59 h]; Mason [15.59 h]; Operator [31.18 h]; Surveyor [15.59 h]; Surveyor Helper [15.59 h]; JCB [16 h] | 1,875.53 |  | 0.00109606952428428 | Cons. | Z3 | Roads | Cons | Roads | Rd 02 |  |
| B1.2.32 16.13.03.10 |  | Edge Curb, Type K4 | 2d | 2026-11-09 | 2026-11-11 | B1.2.32 16.13.02.9, 32 16 13.0010 |  |  |  |  | 28.82d | 0d | Edge Curb, Type K4 [1293.54]; Labor [62.37 h]; Foreman [31.18 h]; Mason [31.18 h]; Operator [62.37 h]; Surveyor [31.18 h]; Surveyor Helper [31.18 h]; JCB [32 h] | 97,672.71 |  | 0.0537893027219767 | Cons. | Z3 | Roads | Cons | Roads | Rd 02 |  |
| B1.2.32 16.13.0410 |  | Heel Curb, Type K5 | 2d | 2026-11-11 | 2026-11-14 | B1.2.32 16.13.03.10, 32 16 13.0010 |  |  |  |  | 28.82d | 0d | Heel Curb, Type K5 [965.84]; Labor [62.37 h]; Foreman [31.18 h]; Mason [31.18 h]; Operator [62.37 h]; Surveyor [31.18 h]; Surveyor Helper [31.18 h]; JCB [32 h] | 61,904.31 |  | 0.0325809963465851 | Cons. | Z3 | Roads | Cons | Roads | Rd 02 |  |
| B1.2.32 16.13.05.9 |  | Transition Curb | 2d | 2026-11-14 | 2026-11-16 | B1.2.32 16.13.0410, 32 16 13.0010 |  |  |  |  | 28.82d | 0d | Transition Curb [10.44]; Labor [31.18 h]; Foreman [15.59 h]; Mason [15.59 h]; Operator [31.18 h]; Surveyor [15.59 h]; Surveyor Helper [15.59 h]; JCB [16 h] | 842.97 |  | 0.000512094727722294 | Cons. | Z3 | Roads | Cons | Roads | Rd 02 |  |
|  | Finishing | **Finishing** |  | 2026-11-16 | 2026-11-18 |  |  |  |  |  |  |  |  |  |  |  |  |  |  |  |  |  |  |
| 32 16 13.010 |  | Finishing, Fareface | 2d | 2026-11-16 | 2026-11-18 | B1.2.32 16.13.01.10, B1.2.32 16.13.02.9, B1.2.32 16.13.03.10, B1.2.32 16.13.0410, B1.2.32 16.13.05.9 |  |  |  |  | 28.82d | 0d | Curb Stone, Type K1 [42.24]; Dropped Curb, Type K3 [0.4]; Edge Curb, Type K4 [328.09]; Heel Curb, Type K5 [214.63]; Transition Curb [3.48]; Labor [77.96 h]; Mason [38.98 h] | 42,032.76 |  | 0.0229539712461451 | Cons. | Z3 | Roads | Cons | Roads | Rd 02 |  |
|  | Asphalt Layers | **Asphalt Layers** |  | 2026-06-02 | 2026-11-24 |  |  |  |  |  |  |  |  |  |  |  |  |  |  |  |  |  |  |
| B1.2.32 11 26.01.10 |  | Bituminous Base Course including Prime Coat (MC1) and tack coat (RC2) (71.00% Completed) | 91d | 2026-06-02 A | 2026-09-15 A | B1.2.32 11 23.01.10 SS | 100% |  |  |  |  |  | Bituminous base course(Grading I - Class A) [534.52]; Labor [22.14 h]; Foreman [11.07 h]; Operator [22.14 h]; Surveyor [11.07 h]; Surveyor Helper [11.07 h]; Dump Truck [11.36 h]; Roller Compactor [11.36 h]; MC1/RC2 Sprayer [11.36 h] | 293,784.52 | 293,784.52 | 0.228256891331108 | Cons. | Z3 | Roads | Cons | Roads | Rd 02 | BBC |
| B1.2.32 11 26.01.10_R |  | Bituminous Base Course including Prime Coat (MC1) and tack coat (RC2)(Rem) | 2d | 2026-09-24 A | 2026-10-22 | B1.2.32 11 23.01.10_R SS, B1.2.32 11 26.01.10 | 28% | 1.44d | 2026-09-16 | 2026-09-17 | 53.32d | 51.88d | Bituminous base course(Grading I - Class A) [218.32]; Labor [9.04 h]; Foreman [4.52 h]; Operator [9.04 h]; Surveyor [4.52 h]; Surveyor Helper [4.52 h]; Dump Truck [4.64 h]; Roller Compactor [4.64 h]; MC1/RC2 Sprayer [4.64 h] | 119,996.49 | 101,260.18 | 0.228256891331108 | Cons. | Z3 | Roads | Cons | Roads | Rd 02 | BBC |
| B1.2.32 12 16.01.10 |  | Bituminous concrete Wearing Course, including tack coat (RC2) | 5d | 2026-11-18 | 2026-11-24 | B1.2.32 11 26.01.10_R SS, 32 16 13.010 |  |  |  |  | 28.82d | 0d | Bituminous concrete wearing course, after compaction(Grading I - Class A), including tack coat (RC2) [275.47]; Labor [31.18 h]; Foreman [15.59 h]; Operator [31.18 h]; Surveyor [15.59 h]; Surveyor Helper [15.59 h]; Dump Truck [16 h]; Roller Compactor [16 h]; MC1/RC2 Sprayer [16 h] | 162,528.92 |  | 0.0896103425120152 | Cons. | Z3 | Roads | Cons | Roads | Rd 02 | BWC |
|  | Pavement Marking | **Pavement Marking** |  | 2026-11-24 | 2026-11-26 |  |  |  |  |  |  |  |  |  |  |  |  |  |  |  |  |  |  |
| B1.2.32 17 23.02.10 |  | Retroreflective Thermoplastic Yellow, Traffic lines | 1d | 2026-11-24 | 2026-11-25 | B1.2.32 12 16.01.10 |  |  |  |  | 77.82d | 0d | Retroreflective Thermoplastic Yellow, Traffic lines [44.75]; Labor [31.18 h]; Mason [15.59 h]; Road Marking Machine [16 h] | 1,336.02 |  | 0.000671682461537607 | Cons. | Z3 | Roads | Cons | Roads | Rd 02 |  |
| B1.2.32 17 23.01.10 |  | Retroreflective Thermoplastic White Traffic lines | 1d | 2026-11-25 | 2026-11-26 | B1.2.32 12 16.01.10, B1.2.32 17 23.02.10 |  |  |  |  | 77.82d | 0d | Retroreflective Thermoplastic White Traffic lines [93.38]; Labor [46.78 h]; Mason [23.39 h]; Road Marking Machine [24 h] | 2,787.51 |  | 0.00140141747854929 | Cons. | Z3 | Roads | Cons | Roads | Rd 02 |  |
|  | Traffic Signs | **Traffic Signs** |  | 2026-10-31 | 2026-11-29 |  |  |  |  |  |  |  |  |  |  |  |  |  |  |  |  |  |  |
|  | Pre Install | **Pre-Installation** |  | 2026-10-31 | 2026-11-04 |  |  |  |  |  |  |  |  |  |  |  |  |  |  |  |  |  |  |
| B2.31 23 00.281 |  | Excavation | 2d | 2026-10-31 | 2026-11-02 | B2.31 23 00.271 |  |  |  |  | 18.82d | 0d | Traffic signs, ground mounted, 1 Sheet Alumenium, (breakaway) Single post [0.57]; Labor [31.18 h]; Foreman [15.59 h]; Operator [31.18 h]; Surveyor [15.59 h]; Surveyor Helper [15.59 h]; JCB [16 h]; Water Tanker [16 h]; Dump Truck [16 h]; Plate Compactor [16 h] | 636.09 |  | 0.000319792148564778 | Cons. | Z3 | Roads | Cons | Roads | Rd 02 |  |
| 10 14 53.010 |  | Foundation | 2d | 2026-11-02 | 2026-11-04 | B2.31 23 00.281 |  |  |  |  | 96.82d | 19d | Traffic signs, ground mounted, 1 Sheet Alumenium, (breakaway) Single post [0.57]; Labor [46.78 h]; Carpenter [23.39 h]; Steelfixer [23.39 h]; Mason [23.39 h]; Surveyor [23.39 h]; Surveyor Helper [23.39 h] | 636.09 |  | 0.000319792148564778 | Cons. | Z3 | Roads | Cons | Roads | Rd 02 |  |

| ID | WBS | Activity | Duration | Start | Finish | Predecessors | Complete | Planned start | Planned finish | Total float | Free float | Resources | Cost | Actual cost | Weight % | DMM2 Weekly Progress | DMM2 Zones | Networks & Stations | DMM2 Phases | Networks Components | Dmm2 Roads | Yellow Sheet | UNASCO | Subcontractors works |
| --- | --- | --- | --- | --- | --- | --- | --- | --- | --- | --- | --- | --- | --- | --- | --- | --- | --- | --- | --- | --- | --- | --- | --- | --- |
|  | Installation | **Installation** |  | 2026-11-26 | 2026-11-29 |  |  |  |  |  |  |  |  |  |  |  |  |  |  |  |  |  |  |  |
| B1.2.10 14 53.0110 |  | 1 Sheet Alumenium, Single post | 2d | 2026-11-26 | 2026-11-29 | 10 14 53.010, B1.2.32 17 23.02.10, B1.2.32 17 23.01.10, B1.2.10 14 53.0111 SS |  |  |  | 77.82d | 26.91d | Traffic signs, ground mounted, 1 Sheet Alumenium, (breakaway) Single post [1.7]; Labor [31.18 h]; Foreman [15.59 h]; Operator [31.18 h]; JCB [16 h] | 1,897.1 |  | 0.000953766057123017 | Cons. | Z3 | Roads | Cons | Roads | Rd 02 |  |  |  |
|  | Guard Rail | **Guard Rail** |  | 2026-10-27 | 2026-11-04 |  |  |  |  |  |  |  |  |  |  |  |  |  |  |  |  |  |  |  |
| B2.31 23 00.654 |  | Excavation | 3d | 2026-10-27 | 2026-10-29 | B2.31 23 00.664 FS+2d |  |  |  | 45.32d | 0d | Labor [31.18 h]; Foreman [15.59 h]; Operator [31.18 h]; Surveyor [15.59 h]; Surveyor Helper [15.59 h]; JCB [16 h]; Water Tanker [16 h]; Dump Truck [16 h]; Plate Compactor [16 h]; W-Beam Guard Rail [450] | 126,000 |  | 0.000319792148564778 | Cons. | Z3 | Roads | Cons | Roads | Rd 02 |  |  |  |
| 10 14 53.15 |  | Foundation | 2d | 2026-10-29 | 2026-10-31 | B2.31 23 00.654 SS+2d |  |  |  | 45.32d | 0d | Labor [46.78 h]; Carpenter [23.39 h]; Steelfixer [23.39 h]; Mason [23.39 h]; Surveyor [23.39 h]; Surveyor Helper [23.39 h]; W-Beam Guard Rail [750] | 210,000 |  | 0.000319792148564778 | Cons. | Z3 | Roads | Cons | Roads | Rd 02 |  |  |  |
| B1.2.10 14 53.328 |  | W-Beam Guard Rail Installation | 4d | 2026-11-01 | 2026-11-04 | 10 14 53.15 SS+2d, B1.2.10 14 53.338 SS |  |  |  | 45.32d | 40.32d | Labor [31.18 h]; Foreman [15.59 h]; Operator [31.18 h]; JCB [16 h]; W-Beam Guard Rail [1800] | 504,000 |  | 0.000953766057123017 | Cons. | Z3 | Roads | Cons | Roads | Rd 02 |  |  |  |
|  | Landscape | **Landscape** |  | 2026-11-02 | 2026-11-24 |  |  |  |  |  |  |  |  |  |  |  |  |  |  |  |  |  |  |  |
|  | Fences | **Fences** |  | 2026-11-02 | 2026-11-24 |  |  |  |  |  |  |  |  |  |  |  |  |  |  |  |  |  |  |  |
|  | (ZATCA HCIS) | **Steel fence (ZATCA HCIS)** |  | 2026-11-02 | 2026-11-24 |  |  |  |  |  |  |  |  |  |  |  |  |  |  |  |  |  |  |  |
| B7.32 31 26.01-4 |  | Earthwork | 6d | 2026-11-02 | 2026-11-09 | B2.31 23 00.281 |  |  |  | 18.82d | 0d | Labor [109.15 h]; Foreman [54.57 h]; Operator [109.15 h]; Surveyor [54.57 h]; Surveyor Helper [54.57 h]; Excavator (With Bucket) [56 h]; Water Tanker [56 h]; Dump Truck [56 h]; Plate Compactor [56 h]; Steel fence (ZATCA HCIS) [116.81] | 25,743.45 |  | 0.0145109845928078 | Cons. | Z3 | Landscp | Cons | Fncs&Gt | Rd 02 | ZTK.Fns |  |  |
| B7.32 31 26.01-6 |  | Foundation | 6d | 2026-11-09 | 2026-11-16 | B7.32 31 26.01-4 |  |  |  | 18.82d | 0d | Labor [124.74 h]; Laboratory Officer [62.37 h]; Carpenter [62.37 h]; Steelfixer [62.37 h]; Mason [62.37 h]; Surveyor [62.37 h]; Surveyor Helper [62.37 h]; Steel fence (ZATCA HCIS) [116.81] | 25,743.45 |  | 0.0145109845928078 | Cons. | Z3 | Landscp | Cons | Fncs&Gt | Rd 02 | ZTK.Fns |  |  |
| B7.32 31 26.01-8 |  | Fence Installation | 7d | 2026-11-16 | 2026-11-24 | B7.32 31 26.01-6 |  |  |  | 18.82d | 0d | Labor [155.92 h]; Foreman [77.96 h]; Welder [77.96 h]; Mason [77.96 h]; Operator [155.92 h]; Boom Truck [80 h]; Welding Machine [80 h]; Steel fence (ZATCA HCIS) [545.13] | 120,135.44 |  | 0.0677175587789433 | Cons. | Z3 | Landscp | Cons | Fncs&Gt | Rd 02 | ZTK.Fns |  |  |
|  | Customs Road 04&RD05 | **Customs Road 04 & Road 05** |  | 2025-12-05 | 2026-12-30 |  |  |  |  |  |  |  |  |  |  |  |  |  |  |  |  |  |  |  |
|  | Wet Networks | **Wet Networks** |  | 2026-02-11 | 2026-11-30 |  |  |  |  |  |  |  |  |  |  |  |  |  |  |  |  |  |  |  |
|  | Stormwater Network | **Stormwater Network** |  | 2026-02-11 | 2026-10-26 |  |  |  |  |  |  |  |  |  |  |  |  |  |  |  |  |  |  |  |
|  | GRP | **GRP** |  | 2026-02-11 | 2026-05-17 |  |  |  |  |  |  |  |  |  |  |  |  |  |  |  |  |  |  |  |
|  | ?40011 | **?1500** |  | 2026-02-11 | 2026-05-17 |  |  |  |  |  |  |  |  |  |  |  |  |  |  |  |  |  |  |  |
|  | 3 | **Depth From 2.5m to 3.5m** |  | 2026-02-11 | 2026-05-17 |  |  |  |  |  |  |  |  |  |  |  |  |  |  |  |  |  |  |  |
| B6.33 42 11.34-1.1 |  | Excavation | 2d | 2026-02-11 A | 2026-02-14 A | B1.1.31 23 23.142 | 100% |  |  |  |  | Labor [28.35 h]; Foreman [14.17 h]; Operator [28.35 h]; Surveyor [14.17 h]; Surveyor Helper [14.17 h]; Excavator (With Bucket) [16 h]; Water Tanker [16 h]; Dump Truck [16 h]; Plate Compactor [16 h]; 2.51m - 3.5m [30.32] | 58,672.54 | 58,672.54 | 0.0124664505738366 | Cons. | Z3 | Storm | Cons | GRPs | Cust. Rd 04&05 | Strm | CS.UNSC | SUB.C |
| B6.33 42 11.34-1.3 |  | Sand Bedding | 2d | 2026-02-15 A | 2026-02-17 A | B6.33 42 11.34-1.1 | 100% |  |  |  |  | Labor; Foreman; Operator; Surveyor; Surveyor Helper; Loader; Water Tanker; Dump Truck; Plate Compactor; 2.51m - 3.5m |  |  | 0.00311796124261252 | Cons. | Z3 | Storm | Cons | GRPs | Cust. Rd 04&05 | Strm | CS.UNSC | SUB.C |
| B6.33 42 11.34-1.5 |  | Pipe Laying | 1.5d | 2026-02-16 A | 2026-02-17 A | B6.33 42 11.34-1.3 | 100% |  |  |  |  | Labor [28.35 h]; Foreman [14.17 h]; Plumber Helper [14.17 h]; Plumber [14.17 h]; Operator [14.17 h]; Surveyor [14.17 h]; Surveyor Helper [14.17 h]; Mobile Crane [16 h]; 2.51m - 3.5m [66] | 127,709.86 | 127,709.86 | 0.0280562567868992 | Cons. | Z3 | Storm | Cons | GRPs | Cust. Rd 04&05 | Strm | CS.UNSC | SUB.C |
| B6.33 42 11.34-1.7 |  | Embedment & Test | 1d | 2026-02-21 A | 2026-02-23 A | B6.33 42 11.34-1.5 | 100% |  |  |  |  | Labor [56.7 h]; Foreman [28.35 h]; Plumber Helper [28.35 h]; Plumber [28.35 h]; Operator [56.7 h]; Surveyor [28.35 h]; Surveyor Helper [28.35 h]; Loader [32 h]; Water Tanker [32 h]; Dump Truck [32 h]; Plate Compactor [32 h]; Roller Compactor [32 h]; 2.51m - 3.5m [30.32] | 58,672.54 | 58,672.54 | 0.0124664505738366 | Cons. | Z3 | Storm | Cons | GRPs | Cust. Rd 04&05 | Strm | CS.UNSC | SUB.C |
| B6.33 42 11.34-1.9 |  | Backfilling & Warrning Tape | 29.6d | 2026-04-13 A | 2026-05-17 A | B6.33 42 11.34-1.7 | 100% |  |  |  |  | Labor [70.87 h]; Foreman [35.44 h]; Operator [141.75 h]; Surveyor [35.44 h]; Surveyor Helper [35.44 h]; Loader [40 h]; Water Tanker [40 h]; Dump Truck [40 h]; Plate Compactor [40 h]; Roller Compactor [40 h]; 2.51m - 3.5m [14.67] | 28,388.06 | 28,388.06 | 0.00623592248522508 | Cons. | Z3 | Storm | Cons | GRPs | Cust. Rd 04&05 | Strm | CS.UNSC | SUB.C |
|  | Strom Manholes | **Manholes** |  | 2026-02-15 | 2026-10-26 |  |  |  |  |  |  |  |  |  |  |  |  |  |  |  |  |  |  |  |
|  | 3 | **?2000** |  | 2026-02-15 | 2026-10-26 |  |  |  |  |  |  |  |  |  |  |  |  |  |  |  |  |  |  |  |
|  | 3 | **Depth From 2.5m to 3.5m** |  | 2026-02-15 | 2026-10-26 |  |  |  |  |  |  |  |  |  |  |  |  |  |  |  |  |  |  |  |
| B6.33 05 39.01.3677 |  | Excavation & Compaction | 2d | 2026-02-15 A | 2026-02-17 A | B6.33 42 11.34-1.1 | 100% |  |  |  |  | Labor; Foreman; Operator; Surveyor; Surveyor Helper; Excavator (With Bucket); Water Tanker; Dump Truck; Plate Compactor; Storm MH depth 2.51 - 3.5m |  |  | 0.00208346832855844 | Cons. | Z3 | Storm | Cons | Manhole | Cust. Rd 04&05 | Strm | CS.UNSC | SUB.C |
| B6.33 05 39.01.3687 |  | Blinding Conc, & RC Base (83.00% Completed) | 36d | 2026-08-05 A | 2026-09-15 A | B6.33 05 39.01.3677 | 100% |  |  |  |  | Labor [38.82 h]; Foreman [19.41 h]; Laboratory Officer [19.41 h]; Carpenter [19.41 h]; Steelfixer [19.41 h]; Mason [19.41 h]; Storm MH depth 2.51 - 3.5m [0.35] | 5,888.99 | 5,888.99 | 0.00137319503473171 | Cons. | Z3 | Storm | Cons | Manhole | Cust. Rd 04&05 | Strm | CS.UNSC | SUB.C |
| B6.33 05 39.01.3697 |  | Manhole Installation (83.00% Completed) | 33d | 2026-08-09 A | 2026-09-15 A | B6.33 05 39.01.3687 SS | 100% |  |  |  |  | Labor [25.88 h]; Operator [25.88 h]; Surveyor [12.94 h]; Surveyor Helper [12.94 h]; Boom Truck [13.28 h]; Mobile Crane [13.28 h]; Storm MH depth 2.51 - 3.5m [1.64] | 27,886.88 | 27,886.88 | 0.00625042100380389 | Cons. | Z3 | Storm | Cons | Manhole | Cust. Rd 04&05 | Strm | CS.UNSC | SUB.C |
| B6.33 05 39.01.3717 |  | Backfilling (83.00% Completed) | 26d | 2026-08-17 A | 2026-09-15 A | B6.33 42 11.34-1.9 | 100% |  |  |  |  | Labor [64.71 h]; Foreman [32.35 h]; Operator [64.71 h]; Surveyor [32.35 h]; Surveyor Helper [32.35 h]; Loader [33.2 h]; Water Tanker [33.2 h]; Dump Truck [33.2 h]; Plate Compactor [33.2 h]; Storm MH depth 2.51 - 3.5m [0.75] | 12,870.19 | 12,870.19 | 0.00300107232895791 | Cons. | Z3 | Storm | Cons | Manhole | Cust. Rd 04&05 | Strm | CS.UNSC | SUB.C |
| B6.33 05 39.01.3687_R |  | Blinding Conc, & RC Base(Rem) | 3d | 2026-09-16 A | 2026-09-19 A | B6.33 05 39.01.3677, B6.33 05 39.01.3687 | 100% |  |  |  |  | Labor [7.95 h]; Foreman [3.98 h]; Laboratory Officer [3.98 h]; Carpenter [3.98 h]; Steelfixer [3.98 h]; Mason [3.98 h]; Storm MH depth 2.51 - 3.5m [0.07] | 1,206.18 | 1,206.18 | 0.00137319503473171 | Cons. | Z3 | Storm | Cons | Manhole | Cust. Rd 04&05 | Strm | CS.UNSC | SUB.C |
| B6.33 05 39.01.3697_R |  | Manhole Installation(Rem) | 3d | 2026-09-22 A | 2026-09-26 A | B6.33 05 39.01.3687_R SS, B6.33 05 39.01.3697 | 100% | 2026-09-16 | 2026-09-19 |  |  | Labor [5.3 h]; Operator [5.3 h]; Surveyor [2.65 h]; Surveyor Helper [2.65 h]; Boom Truck [2.72 h]; Mobile Crane [2.72 h]; Storm MH depth 2.51 - 3.5m [0.33] | 5,711.77 | 5,711.77 | 0.00625042100380389 | Cons. | Z3 | Storm | Cons | Manhole | Cust. Rd 04&05 | Strm | CS.UNSC | SUB.C |
| B6.33 05 39.01.3717_R |  | Backfilling(Rem) | 3d | 2026-10-18 A | 2026-10-20 A | B6.33 05 39.01.3707 FF, B6.33 05 39.01.3717, B6.33 05 39.01.3767_R | 100% |  |  |  |  | Labor [13.25 h]; Foreman [6.63 h]; Operator [13.25 h]; Surveyor [6.63 h]; Surveyor Helper [6.63 h]; Loader [6.8 h]; Water Tanker [6.8 h]; Dump Truck [6.8 h]; Plate Compactor [6.8 h]; Storm MH depth 2.51 - 3.5m [0.15] | 2,636.06 | 2,636.06 | 0.00300107232895791 | Cons. | Z3 | Storm | Cons | Manhole | Cust. Rd 04&05 | Strm | CS.UNSC | SUB.C |
| B6.33 05 39.01.3707 |  | Test, Internal Finishing, Benching & Cover | 5d | 2026-10-21 | 2026-10-26 | B6.33 05 39.01.3697_R |  |  |  | 108.32d |  | Labor [62.37 h]; Foreman [31.18 h]; Plumber Helper [31.18 h]; Plumber [31.18 h]; Mason [31.18 h]; Storm MH depth 2.51 - 3.5m [0.42] | 7,095.17 |  | 0.00137319503473171 | Cons. | Z3 | Storm | Cons | Manhole | Cust. Rd 04&05 | Strm | CS.UNSC | SUB.C |

| ID | WBS | Activity | Duration | Start | Finish | Predecessors | Complete | Planned start | Planned finish | Total float | Free float | Resources | Cost | Actual cost | Weight % | DMM2 Weekly Progress | DMM2 Zones | Networks & Stations | DMM2 Phases | UNASCO | Networks Components | Subcontractors works | Dmm2 Roads | Yellow Sheet |
| --- | --- | --- | --- | --- | --- | --- | --- | --- | --- | --- | --- | --- | --- | --- | --- | --- | --- | --- | --- | --- | --- | --- | --- | --- |
|  | Catch Basins | **Catch Basins** |  | 2026-03-11 | 2026-10-19 |  |  |  |  |  |  |  |  |  |  |  |  |  |  |  |  |  |  |  |
|  | Sing | **Single** |  | 2026-06-10 | 2026-10-19 |  |  |  |  |  |  |  |  |  |  |  |  |  |  |  |  |  |  |  |
| B6.33 05 40.01.450 |  | Excavation, Compaction & Vapour Barrier (67.00% Completed) | 84d | 2026-06-10 A | 2026-09-15 A | B6.33 05 39.01.3677 | 100% |  |  |  |  | Labor [20.89 h]; Foreman [10.45 h]; Operator [20.89 h]; Surveyor [10.45 h]; Surveyor Helper [10.45 h]; Excavator (With Bucket) [10.72 h]; Water Tanker [10.72 h]; Dump Truck [10.72 h]; Roller Compactor [10.72 h]; Single Catch basin [2] | 9,058.17 | 9,058.17 | 0.00296566869933904 | Cons. | Z3 | Storm | Cons | CS.UNSC | CBs | SUB.C | Cust. Rd 04&05 | Strm |
| B6.33 05 40.01.460 |  | Blinding Conc. (67.00% Completed) | 82d | 2026-06-13 A | 2026-09-15 A | B6.33 05 40.01.450 SS | 100% |  |  |  |  | Labor [20.89 h]; Foreman [10.45 h]; Laboratory Officer [10.45 h]; Carpenter [10.45 h]; Steelfixer [10.45 h]; Mason [10.45 h]; Single Catch basin [1.33] | 6,025.65 | 6,025.65 | 0.00197281439564727 | Cons. | Z3 | Storm | Cons | CS.UNSC | CBs | SUB.C | Cust. Rd 04&05 | Strm |
| B6.33 05 40.01.470 |  | Catch Basin Installation (67.00% Completed) | 79.67d | 2026-06-15 A | 2026-09-15 A | B6.33 05 40.01.460 SS, B6.33 05 40.01.750 SS | 100% |  |  |  |  | Labor [31.34 h]; Foreman [15.67 h]; Carpenter [15.67 h]; Steelfixer [15.67 h]; Mason [15.67 h]; Operator [31.34 h]; Surveyor [15.67 h]; Surveyor Helper [15.67 h]; Boom Truck [16.08 h]; Single Catch basin [5.99] | 27,056.37 | 27,056.37 | 0.00885832346280832 | Cons. | Z3 | Storm | Cons | CS.UNSC | CBs | SUB.C | Cust. Rd 04&05 | Strm |
| B6.33 05 40.01.450_R |  | Excavation, Compaction & Vapour Barrier(Rem) | 3d | 2026-10-07 A | 2026-10-13 A | B6.33 05 39.01.3677, B6.33 05 40.01.450 | 100% | 2026-10-21 | 2026-10-24 |  |  | Labor [10.29 h]; Foreman [5.15 h]; Operator [10.29 h]; Surveyor [5.15 h]; Surveyor Helper [5.15 h]; Excavator (With Bucket) [5.28 h]; Water Tanker [5.28 h]; Dump Truck [5.28 h]; Roller Compactor [5.28 h]; Single Catch basin [0.99] | 4,461.49 | 4,461.49 | 0.00296566869933904 | Cons. | Z3 | Storm | Cons | CS.UNSC | CBs | SUB.C | Cust. Rd 04&05 | Strm |
| B6.33 05 40.01.460_R |  | Blinding Conc.(Rem) | 3d | 2026-10-10 A | 2026-10-15 A | B6.33 05 40.01.450_R SS+1d, B6.33 05 40.01.460 | 100% | 2026-10-22 | 2026-10-25 |  |  | Labor [10.29 h]; Foreman [5.15 h]; Laboratory Officer [5.15 h]; Carpenter [5.15 h]; Steelfixer [5.15 h]; Mason [5.15 h]; Single Catch basin [0.66] | 2,967.86 | 2,967.86 | 0.00197281439564727 | Cons. | Z3 | Storm | Cons | CS.UNSC | CBs | SUB.C | Cust. Rd 04&05 | Strm |
| B6.33 05 40.01.470_R |  | Catch Basin Installation(Rem) | 3d | 2026-10-12 A | 2026-10-17 A | B6.33 05 40.01.460_R, B6.33 05 40.01.750_R SS, B6.33 05 40.01.470 | 100% | 2026-10-26 | 2026-10-28 |  |  | Labor [15.44 h]; Foreman [7.72 h]; Carpenter [7.72 h]; Steelfixer [7.72 h]; Mason [7.72 h]; Operator [15.44 h]; Surveyor [7.72 h]; Surveyor Helper [7.72 h]; Boom Truck [7.92 h]; Single Catch basin [2.95] | 13,326.27 | 13,326.27 | 0.00885832346280832 | Cons. | Z3 | Storm | Cons | CS.UNSC | CBs | SUB.C | Cust. Rd 04&05 | Strm |
| B6.33 05 40.01.480 |  | Backfilling, DI Frame & Grate Cover Fixing | 3d | 2026-10-15 A | 2026-10-19 A | B6.33 42 11.36-195, B6.33 05 63.082_R, B6.33 05 40.01.200_R, B6.33 05 40.01.470_R | 100% | 2026-10-29 | 2026-11-01 |  |  | Labor [77.96 h]; Foreman [38.98 h]; Operator [77.96 h]; Surveyor [38.98 h]; Surveyor Helper [38.98 h]; Loader [40 h]; Water Tanker [40 h]; Dump Truck [40 h]; Plate Compactor [40 h]; Single Catch basin [5.96] | 26,921.76 | 26,921.76 | 0.00590554897520555 | Cons. | Z3 | Storm | Cons | CS.UNSC | CBs | SUB.C | Cust. Rd 04&05 | Strm |
|  | UPVC | **UPVC** |  | 2026-03-11 | 2026-10-01 |  |  |  |  |  |  |  |  |  |  |  |  |  |  |  |  |  |  |  |
|  | UPVC300 | **?300 From 0.0 to 1.5m** |  | 2026-03-11 | 2026-10-01 |  |  |  |  |  |  |  |  |  |  |  |  |  |  |  |  |  |  |  |
| B6.33 42 11.35-122 |  | Fittings & Pipe Installation | 2d | 2026-03-11 A | 2026-03-13 A | B6.33 05 39.01.3677 | 100% | 2026-03-11 | 2026-03-14 |  |  | Labor [28.35 h]; Foreman [14.17 h]; Plumber Helper [14.17 h]; Plumber [14.17 h]; Surveyor [14.17 h]; Surveyor Helper [14.17 h]; less than 1.5 [186.46] | 112,143.85 | 112,143.85 | 0.0603343421083148 | Cons. | Z3 | Storm | Cons | CS.UNSC | UPVC | SUB.C | Cust. Rd 04&05 | Strm |
| B6.33 42 11.35-110 |  | Catch Basin Opening Prep. (67.00% Completed) | 79.67d | 2026-06-15 A | 2026-09-15 A | B6.33 05 40.01.470 SS | 100% |  |  |  |  | Labor [20.89 h]; Foreman [10.45 h]; Plumber Helper [10.45 h]; Plumber [10.45 h]; less than 1.5 [31.23] | 18,784.09 | 18,784.09 | 0.0150835855285905 | Cons. | Z3 | Storm | Cons | CS.UNSC | UPVC | SUB.C | Cust. Rd 04&05 | Strm |
| B6.33 42 11.35-110_R |  | Catch Basin Opening Prep.(Rem) | 3d | 2026-09-27 A | 2026-10-01 A | B6.33 05 40.01.470_R, B6.33 42 11.35-110 | 100% | 2026-09-16 | 2026-09-19 |  |  | Labor [10.29 h]; Foreman [5.15 h]; Plumber Helper [5.15 h]; Plumber [5.15 h]; less than 1.5 [15.38] | 9,251.87 | 9,251.87 | 0.0150835855285905 | Cons. | Z3 | Storm | Cons | CS.UNSC | UPVC | SUB.C | Cust. Rd 04&05 | Strm |
|  | UPVC3001 | **?400 From 0.0 to 1.5m** |  | 2026-03-11 | 2026-09-27 |  |  |  |  |  |  |  |  |  |  |  |  |  |  |  |  |  |  |  |
| B6.33 42 11.36-195 |  | Fittings & Pipe Installation | 2d | 2026-03-11 A | 2026-03-13 A | B6.33 42 11.35-122 | 100% | 2026-03-11 | 2026-03-14 |  |  | Labor [28.35 h]; Foreman [14.17 h]; Plumber Helper [14.17 h]; Plumber [14.17 h]; Surveyor [14.17 h]; Surveyor Helper [14.17 h]; less than 1.5 [186.46] | 112,143.85 | 112,143.85 | 0.0603343421083148 | Cons. | Z3 | Storm | Cons | CS.UNSC | UPVC | SUB.C | Cust. Rd 04&05 | Strm |
| B6.33 42 11.36-183 |  | Catch Basin Opening Prep. (67.00% Completed) | 79.67d | 2026-06-15 A | 2026-09-15 A | B6.33 42 11.35-110 SS | 100% |  |  |  |  | Labor [20.89 h]; Foreman [10.45 h]; Plumber Helper [10.45 h]; Plumber [10.45 h]; less than 1.5 [31.23] | 18,784.09 | 18,784.09 | 0.0150835855285905 | Cons. | Z3 | Storm | Cons | CS.UNSC | UPVC | SUB.C | Cust. Rd 04&05 | Strm |
| B6.33 42 11.36-183_R |  | Catch Basin Opening Prep.(Rem) | 3d | 2026-09-24 A | 2026-09-27 A | B6.33 42 11.35-110_R SS, B6.33 42 11.36-183, B6.33 42 11.36-181_R | 100% |  |  |  |  | Labor [10.29 h]; Foreman [5.15 h]; Plumber Helper [5.15 h]; Plumber [5.15 h]; less than 1.5 [15.38] | 9,251.87 | 9,251.87 | 0.0150835855285905 | Cons. | Z3 | Storm | Cons | CS.UNSC | UPVC | SUB.C | Cust. Rd 04&05 | Strm |
|  | TSE Network | **TSE Network** |  | 2026-04-05 | 2026-11-30 |  |  |  |  |  |  |  |  |  |  |  |  |  |  |  |  |  |  |  |
|  | HDPE | **HDPE Pipes** |  | 2026-04-05 | 2026-10-26 |  |  |  |  |  |  |  |  |  |  |  |  |  |  |  |  |  |  |  |
|  | ?125mm | **?125mm** |  | 2026-04-05 | 2026-10-26 |  |  |  |  |  |  |  |  |  |  |  |  |  |  |  |  |  |  |  |
|  | Depth: 0.0m - 1.5m | **Depth: 0.0m - 1.5m** |  | 2026-04-05 | 2026-10-26 |  |  |  |  |  |  |  |  |  |  |  |  |  |  |  |  |  |  |  |
| B4.33 14 13.01-0191 |  | Excavation | 4d | 2026-04-05 A | 2026-04-09 A | B6.33 05 39.01.3677 | 100% |  |  |  |  | Labor [28.35 h]; Foreman [14.17 h]; Operator [28.35 h]; Surveyor [14.17 h]; Surveyor Helper [14.17 h]; Excavator (With Bucket) [16 h]; Water Tanker [16 h]; Dump Truck [16 h]; Plate Compactor [16 h]; Dia. 125mm 0.0m - 1.5m [80.8] | 12,485.54 | 12,485.54 | 0.00360324608999108 | Cons. | Z3 | TSE | Cons | CS.UNSC | HDPEs | SUB.C | Cust. Rd 04&05 | TSE |
| B4.33 14 13.01-0193 |  | Sand Bedding | 39.02d | 2026-04-06 A | 2026-05-21 A | B4.33 14 13.01-0191 | 100% |  |  |  |  | Labor [28.35 h]; Foreman [14.17 h]; Operator [56.7 h]; Surveyor [14.17 h]; Surveyor Helper [14.17 h]; Loader [16 h]; Water Tanker [16 h]; Dump Truck [16 h]; Plate Compactor [16 h]; Dia. 125mm 0.0m - 1.5m [20.2] | 3,122.15 | 3,122.15 | 0.000901031931482963 | Cons. | Z3 | TSE | Cons | CS.UNSC | HDPEs | SUB.C | Cust. Rd 04&05 | TSE |
| B4.33 14 13.01-0195 |  | Pipe Laying (20.75% Completed) | 131d | 2026-04-12 A | 2026-09-15 A | B4.33 14 13.01-0193 | 100% |  |  |  |  | Labor [6.47 h]; Foreman [3.24 h]; Plumber Helper [3.24 h]; Plumber [3.24 h]; Operator [3.24 h]; Surveyor [3.24 h]; Surveyor Helper [3.24 h]; Mobile Crane [3.32 h]; Dia. 125mm 0.0m - 1.5m [37.72] | 5,829.35 | 5,829.35 | 0.00810752411146515 | Cons. | Z3 | TSE | Cons | CS.UNSC | HDPEs | SUB.C | Cust. Rd 04&05 | TSE |
| B4.33 14 13.01-0197 |  | Embedment & Test (20.75% Completed) | 111d | 2026-05-05 A | 2026-09-15 A | B4.33 14 13.01-0195 FF | 100% |  |  |  |  | Labor [12.94 h]; Foreman [6.47 h]; Plumber Helper [6.47 h]; Plumber [6.47 h]; Operator [12.94 h]; Surveyor [6.47 h]; Surveyor Helper [6.47 h]; Loader [6.64 h]; Water Tanker [6.64 h]; Dump Truck [6.64 h]; Plate Compactor [6.64 h]; Roller Compactor [6.64 h]; Dia. 125mm 0.0m - 1.5m [16.77] | 2,590.75 | 2,590.75 | 0.00360324608999108 | Cons. | Z3 | TSE | Cons | CS.UNSC | HDPEs | SUB.C | Cust. Rd 04&05 | TSE |
| B4.33 14 13.01-0199 |  | Backfilling & Warrning Tape (20.75% Completed) | 108d | 2026-05-09 A | 2026-09-15 A | B4.33 14 13.01-0197 FF | 100% |  |  |  |  | Labor [16.18 h]; Foreman [8.09 h]; Operator [32.35 h]; Surveyor [8.09 h]; Surveyor Helper [8.09 h]; Loader [8.3 h]; Water Tanker [8.3 h]; Dump Truck [8.3 h]; Plate Compactor [8.3 h]; Roller Compactor [8.3 h]; Dia. 125mm 0.0m - 1.5m [8.38] | 1,295.37 | 1,295.37 | 0.00180162304499554 | Cons. | Z3 | TSE | Cons | CS.UNSC | HDPEs | SUB.C | Cust. Rd 04&05 | TSE |
| B4.33 14 13.01-0195_R |  | Pipe Laying(Rem) | 2.59d | 2026-10-21 | 2026-10-24 | B4.33 14 13.01-0193, B4.33 14 13.01-0195 |  |  |  | 39.74d | 0d | Labor [24.71 h]; Foreman [12.36 h]; Plumber Helper [12.36 h]; Plumber [12.36 h]; Operator [12.36 h]; Surveyor [12.36 h]; Surveyor Helper [12.36 h]; Mobile Crane [12.68 h]; Dia. 125mm 0.0m - 1.5m [144.08] | 22,263.88 |  | 0.00810752411146515 | Cons. | Z3 | TSE | Cons | CS.UNSC | HDPEs | SUB.C | Cust. Rd 04&05 | TSE |
| B4.33 14 13.01-0197_R |  | Embedment & Test(Rem) | 4.17d | 2026-10-21 | 2026-10-26 | B4.33 14 13.01-0195_R FF, B4.33 14 13.01-0197 |  |  |  | 94.15d | 0.79d | Labor [49.43 h]; Foreman [24.71 h]; Plumber Helper [24.71 h]; Plumber [24.71 h]; Operator [49.43 h]; Surveyor [24.71 h]; Surveyor Helper [24.71 h]; Loader [25.36 h]; Water Tanker [25.36 h]; Dump Truck [25.36 h]; Plate Compactor [25.36 h]; Roller Compactor [25.36 h]; Dia. 125mm 0.0m - 1.5m [64.03] | 9,894.79 |  | 0.00360324608999108 | Cons. | Z3 | TSE | Cons | CS.UNSC | HDPEs | SUB.C | Cust. Rd 04&05 | TSE |
| B4.33 14 13.01-0199_R |  | Backfilling & Warrning Tape(Rem) | 4.96d | 2026-10-21 | 2026-10-26 | B4.33 14 13.01-0197_R FF, B4.33 14 13.01-0199 |  |  |  | 93.36d | 0d | Labor [61.78 h]; Foreman [30.89 h]; Operator [123.57 h]; Surveyor [30.89 h]; Surveyor Helper [30.89 h]; Loader [31.7 h]; Water Tanker [31.7 h]; Dump Truck [31.7 h]; Plate Compactor [31.7 h]; Roller Compactor [31.7 h]; Dia. 125mm 0.0m - 1.5m [32.02] | 4,947.4 |  | 0.00180162304499554 | Cons. | Z3 | TSE | Cons | CS.UNSC | HDPEs | SUB.C | Cust. Rd 04&05 | TSE |

| ID | WBS | Activity | Duration | Start | Finish | Predecessors | Complete | Remaining | Planned start | Planned finish | Total float | Free float | Resources | Cost | Actual cost | Weight % | DMM2 Weekly Progress | DMM2 Zones | Networks & Stations | DMM2 Phases | UNASCO | Networks Components | Subcontractors works | Dmm2 Roads | Yellow Sheet | All Electrical Scope |
| --- | --- | --- | --- | --- | --- | --- | --- | --- | --- | --- | --- | --- | --- | --- | --- | --- | --- | --- | --- | --- | --- | --- | --- | --- | --- | --- |
|  | Valves | **Valves** |  | 2026-10-24 | 2026-11-30 |  |  |  |  |  |  |  |  |  |  |  |  |  |  |  |  |  |  |  |  |  |
|  | Solenoid valves | **Solenoid valves** |  | 2026-10-24 | 2026-11-30 |  |  |  |  |  |  |  |  |  |  |  |  |  |  |  |  |  |  |  |  |  |
|  | Solenoid valve ?1.0 | **1 Solenoid valve ?1.0 inch with box** |  | 2026-10-24 | 2026-11-23 |  |  |  |  |  |  |  |  |  |  |  |  |  |  |  |  |  |  |  |  |  |
| B4.32 84 13.062 |  | Pull Box Installation | 3d | 2026-10-24 | 2026-10-27 | B4.33 14 13.01-0195_R |  |  |  |  | 39.74d | 0d | Labor [31.18 h]; Plumber Helper [15.59 h]; Plumber [15.59 h]; Pull Box - 600mm (L) X 600mm (W) [1.71] | 1,848.31 |  | 0.00108411197572214 | Cons. | Z3 | TSE | Cons | CS.UNSC | Val&Chs | SUB.C | Cust. Rd 04&05 | TSE |  |
| B4.32 84 13.40 |  | Cable Laying Two-Wire Decoder (12 AWG) | 3d | 2026-10-27 | 2026-10-31 | B4.33 14 13.01-0195_R, B4.32 84 13.062 |  |  |  |  | 39.74d | 0d | Labor [31.18 h]; Electrician [15.59 h]; Two wire decoder cable 12 awg [350] | 4,917.51 |  | 0.00279720557352336 | Cons. | Z3 | TSE | Cons | CS.UNSC | Val&Chs | SUB.C | Cust. Rd 04&05 | TSE |  |
| B4.32 84 13.41 |  | Solenoid Valve Box Installation | 3d | 2026-10-31 | 2026-11-03 | B4.32 84 13.40 |  |  |  |  | 39.74d | 14.41d | Labor [31.18 h]; Plumber Helper [15.59 h]; Plumber [15.59 h]; Solenoid Valve box. 1 Solenoid valve Dia. 1 inch. [1.99] | 2,838.8 |  | 0.000272525309346853 | Cons. | Z3 | TSE | Cons | CS.UNSC | Val&Chs | SUB.C | Cust. Rd 04&05 | TSE |  |
| B4.32 84 13.42 |  | Bubblers Installation | 3d | 2026-11-21 | 2026-11-23 | B4.32 84 13.41, B4.32 84 13.06 |  |  |  |  | 25.32d | 0d | Labor [31.18 h]; Plumber Helper [15.59 h]; Plumber [15.59 h]; Bubbler [67] | 2,706.13 |  | 0.00134020323979369 | Cons. | Z3 | TSE | Cons | CS.UNSC | Val&Chs | SUB.C | Cust. Rd 04&05 | TSE |  |
|  | Solenoid valve ?1.5 | **1 Solenoid valve ?1.5 inch with box** |  | 2026-10-27 | 2026-11-26 |  |  |  |  |  |  |  |  |  |  |  |  |  |  |  |  |  |  |  |  |  |
| B4.32 84 13.061 |  | Pull Box Installation | 3d | 2026-10-27 | 2026-10-31 | B4.32 84 13.062 |  |  |  |  | 39.74d | 14.41d | Labor [31.18 h]; Plumber Helper [15.59 h]; Plumber [15.59 h]; Pull Box - 600mm (L) X 600mm (W) [1.71] | 1,848.31 |  | 0.00108411197572214 | Cons. | Z3 | TSE | Cons | CS.UNSC | Val&Chs | SUB.C | Cust. Rd 04&05 | TSE |  |
| B4.32 84 13.43 |  | Cable Laying Two-Wire Decoder (12 AWG) | 3d | 2026-10-31 | 2026-11-03 | B4.32 84 13.40 |  |  |  |  | 39.74d | 0d | Labor [31.18 h]; Electrician [15.59 h]; Two wire decoder cable 12 awg [350] | 4,917.51 |  | 0.00279720557352336 | Cons. | Z3 | TSE | Cons | CS.UNSC | Val&Chs | SUB.C | Cust. Rd 04&05 | TSE |  |
| B4.32 84 13.44 |  | Solenoid Valve Box Installation | 3d | 2026-11-03 | 2026-11-07 | B4.32 84 13.43 |  |  |  |  | 39.74d | 14.41d | Labor [31.18 h]; Plumber Helper [15.59 h]; Plumber [15.59 h]; Solenoid Valve box. 1 Solenoid valve Dia. 1.5 inch. [5.2] | 8,434.05 |  | 0.00105531822112046 | Cons. | Z3 | TSE | Cons | CS.UNSC | Val&Chs | SUB.C | Cust. Rd 04&05 | TSE |  |
| B4.32 84 13.45 |  | Bubblers Installation | 3d | 2026-11-24 | 2026-11-26 | B4.32 84 13.44, B4.32 84 13.42 |  |  |  |  | 25.32d | 0d | Labor [31.18 h]; Plumber Helper [15.59 h]; Plumber [15.59 h]; Bubbler [67] | 2,706.13 |  | 0.00134020323979369 | Cons. | Z3 | TSE | Cons | CS.UNSC | Val&Chs | SUB.C | Cust. Rd 04&05 | TSE |  |
|  | Solenoid valve ?2.0 | **1 Solenoid valve ?2.0 inch with box** |  | 2026-11-03 | 2026-11-30 |  |  |  |  |  |  |  |  |  |  |  |  |  |  |  |  |  |  |  |  |  |
| B4.32 84 13.37 |  | Cable Laying Two-Wire Decoder (12 AWG) | 3d | 2026-11-03 | 2026-11-07 | B4.32 84 13.43 |  |  |  |  | 39.74d | 0d | Labor [31.18 h]; Electrician [15.59 h]; Two wire decoder cable 12 awg [350] | 4,917.51 |  | 0.00279720557352336 | Cons. | Z3 | TSE | Cons | CS.UNSC | Val&Chs | SUB.C | Cust. Rd 04&05 | TSE |  |
| B4.32 84 13.38 |  | Solenoid Valve Box Installation | 3d | 2026-11-07 | 2026-11-10 | B4.32 84 13.37 |  |  |  |  | 39.74d | 14.41d | Labor [31.18 h]; Plumber Helper [15.59 h]; Plumber [15.59 h]; Solenoid Valve box. 1 Solenoid valve Dia. 2.0inch. [2.79] | 5,829.6 |  | 0.000720076844983757 | Cons. | Z3 | TSE | Cons | CS.UNSC | Val&Chs | SUB.C | Cust. Rd 04&05 | TSE |  |
| B4.32 84 13.06 |  | Pull Box Installation | 3d | 2026-11-17 | 2026-11-19 | B4.32 84 13.061, B4.32 84 13.76, B4.32 84 13.77 |  |  |  |  | 25.32d | 0d | Labor [31.18 h]; Plumber Helper [15.59 h]; Plumber [15.59 h]; Pull Box - 600mm (L) X 600mm (W) [1.71] | 1,848.31 |  | 0.00108411197572214 | Cons. | Z3 | TSE | Cons | CS.UNSC | Val&Chs | SUB.C | Cust. Rd 04&05 | TSE |  |
| B4.32 84 13.39 |  | Bubblers Installation | 3d | 2026-11-28 | 2026-11-30 | B4.32 84 13.38, B4.32 84 13.45 |  |  |  |  | 25.32d | 0d | Labor [31.18 h]; Plumber Helper [15.59 h]; Plumber [15.59 h]; Bubbler [67] | 2,706.13 |  | 0.00134020323979369 | Cons. | Z3 | TSE | Cons | CS.UNSC | Val&Chs | SUB.C | Cust. Rd 04&05 | TSE |  |
|  | Dry Networks | **Dry Networks** |  | 2026-07-02 | 2026-12-30 |  |  |  |  |  |  |  |  |  |  |  |  |  |  |  |  |  |  |  |  |  |
|  | MV | **Medium Voltage Network** |  | 2026-10-12 | 2026-12-19 |  |  |  |  |  |  |  |  |  |  |  |  |  |  |  |  |  |  |  |  |  |
|  | Duct Banks | **Duct Banks** |  | 2026-10-12 | 2026-10-24 |  |  |  |  |  |  |  |  |  |  |  |  |  |  |  |  |  |  |  |  |  |
|  | 4 Way | **2 Way** |  | 2026-10-12 | 2026-10-24 |  |  |  |  |  |  |  |  |  |  |  |  |  |  |  |  |  |  |  |  |  |
| B2.31 23 00.641 |  | Excavation | 4d | 2026-10-12 A | 2026-10-22 | B6.33 05 40.01.480 | 67% | 1.32d | 2026-10-26 | 2026-10-29 | 21d | 0d | Labor [46.78 h]; Foreman [23.39 h]; Operator [46.78 h]; Surveyor [23.39 h]; Surveyor Helper [23.39 h]; Excavator (With Bucket) [24 h]; Water Tanker [24 h]; Dump Truck [24 h]; Plate Compactor [24 h]; Excavation for Trench size 40cm wide and 80cm deep (for 1 cable) [100]; Duct bank for MV cables UPVC (2xDia. 150mm) [17.08] | 8,056.11 | 5,840.09 | 0.00333826948299228 | Cons. | Z3 | MV | Cons |  | Cbl&Dct | SUB.C | Cust. Rd 04&05 | MV | allElec |
| B2.33 71 00.290 |  | Shuttering, Steel Fixing Incl. UPVC Pipe & Conc. Cast | 8d | 2026-10-15 A | 2026-10-24 | B2.31 23 00.641 | 67% | 2.64d | 2026-10-31 | 2026-11-08 | 110.68d |  | Labor [109.15 h]; Laboratory Officer [54.57 h]; Carpenter [54.57 h]; Steelfixer [54.57 h]; Mason [54.57 h]; Surveyor [54.57 h]; Surveyor Helper [54.57 h]; Excavation for Trench size 40cm wide and 80cm deep (for 1 cable) [300]; Duct bank for MV cables UPVC (2xDia. 150mm) [41.34] | 20,822.61 | 8,662.84 | 0.00874532009243357 | Cons. | Z3 | MV | Cons |  | Cbl&Dct | SUB.C | Cust. Rd 04&05 | MV | allElec |
| B2.33 71 00.291 |  | Backfilling & Warrning Tape | 7d | 2026-10-19 A | 2026-10-24 | B2.33 71 00.290 | 67% | 2.31d | 2026-11-09 | 2026-11-16 | 29.01d | 6.01d | Labor [93.55 h]; Foreman [46.78 h]; Operator [187.11 h]; Surveyor [46.78 h]; Surveyor Helper [46.78 h]; Loader [48 h]; Water Tanker [48 h]; Dump Truck [48 h]; Plate Compactor [48 h]; Roller Compactor [48 h]; Excavation for Trench size 40cm wide and 80cm deep (for 1 cable) [100]; Duct bank for MV cables UPVC (2xDia. 150mm) [21.92] | 9,690.92 | 2,697.91 | 0.00395856834529251 | Cons. | Z3 | MV | Cons |  | Cbl&Dct | SUB.C | Cust. Rd 04&05 | MV | allElec |

| ID | WBS | Activity | Duration | Start | Finish | Predecessors | Complete | Remaining | Planned start | Planned finish | Total float | Free float | Resources | Cost | Actual cost | Weight % | DMM2 Weekly Progress | DMM2 Zones | Networks & Stations | DMM2 Phases | Networks Components | All Electrical Scope | Subcontractors works | Dmm2 Roads | Yellow Sheet |
| --- | --- | --- | --- | --- | --- | --- | --- | --- | --- | --- | --- | --- | --- | --- | --- | --- | --- | --- | --- | --- | --- | --- | --- | --- | --- |
|  | Cables | **Cables** |  | 2026-10-17 | 2026-11-17 |  |  |  |  |  |  |  |  |  |  |  |  |  |  |  |  |  |  |  |  |
|  | 3C,500mm2 | **3C,500mm2** |  | 2026-10-17 | 2026-11-17 |  |  |  |  |  |  |  |  |  |  |  |  |  |  |  |  |  |  |  |  |
| B2.33 71 49.23.86 |  | Cable 13.8 kV Unarmored | 4d | 2026-10-17 A | 2026-10-22 | B2.33 71 49.23.77 | 67% | 1.32d | 2026-10-17 | 2026-10-21 | 49d | 0d | Labor [46.78 h]; Foreman [23.39 h]; Operator [46.78 h]; Boom Truck [24 h]; Electrician [23.39 h]; Cable 13.8 kV 3Cx 500 mm² Al XLPE,/LLDPE / Unarmored [681.79] | 234,058.34 | 156,819.09 | 0.0447374191430308 | Cons. | Z3 | MV | Cons | Cbl&Dct | allElec | SUB.C | Cust. Rd 04&05 | MV |
| B2.33 71 49.23.87 |  | Straight joints cables | 3d | 2026-10-22 | 2026-10-26 | B2.33 71 49.23.86 |  |  |  |  | 95d | 16.68d | Labor [31.18 h]; Foreman [15.59 h]; Electrician [15.59 h]; Straight joints cables for 13.8 kv 3Cx 500 mm², Al /XLPE/LLDPE [2] | 7,880.95 |  | 0.00396214380929156 | Cons. | Z3 | MV | Cons | Cbl&Dct | allElec | SUB.C | Cust. Rd 04&05 | MV |
| B2.33 71 49.23.88 |  | Cable Termination | 3d | 2026-11-15 | 2026-11-17 | B2.33 71 49.23.87, B2.33 71 49.23.79 |  |  |  |  | 78.32d | 0d | Labor [31.18 h]; Foreman [15.59 h]; Electrician [15.59 h]; Cable Termination for 13.8 kv 3Cx 500 mm², Al /XLPE/LLDPE [0.91] | 3,058.5 |  | 0.00153766139892947 | Cons. | Z3 | MV | Cons | Cbl&Dct | allElec | SUB.C | Cust. Rd 04&05 | MV |
|  | RMU | **RMU** |  | 2026-10-26 | 2026-11-07 |  |  |  |  |  |  |  |  |  |  |  |  |  |  |  |  |  |  |  |  |
| B2 33 73 00.02.15 |  | Land Adjustment | 3d | 2026-10-26 | 2026-10-29 | B4.33 14 13.01-0199_R, B2.31 23 00.641, B2.33 71 49.23.86 |  |  |  |  | 93.36d | 0d | Labor [31.18 h]; Foreman [15.59 h]; Operator [31.18 h]; Surveyor [7.8 h]; Surveyor Helper [7.8 h]; Excavator (With Bucket) [16 h]; Water Tanker [16 h]; Dump Truck [16 h]; Roller Compactor [16 h]; RMU, 13.8KV [0.16] | 8,183.22 |  | 0.00156311216657044 | Cons. | Z3 | MV | Cons |  |  | SUB.C | Cust. Rd 04&05 | MV |
| B2 33 73 00.02.17 |  | Foundation Works & Curing | 4d | 2026-10-29 | 2026-11-03 | B2 33 73 00.02.15 |  |  |  |  | 94.36d | 0d | Labor [46.78 h]; Foreman [23.39 h]; Laboratory Officer [23.39 h]; Carpenter [23.39 h]; Steelfixer [23.39 h]; Mason [23.39 h]; RMU, 13.8KV [0.16] | 8,183.22 |  | 0.00156311216657044 | Cons. | Z3 | MV | Cons |  |  | SUB.C | Cust. Rd 04&05 | MV |
| B2 33 73 00.02.19 |  | Installation of Ring Main Unit RMU, 13.8KV | 3d | 2026-11-03 | 2026-11-07 | B2 33 73 00.02.17 |  |  |  |  | 95.36d | 32.45d | Labor [31.18 h]; Operator [31.18 h]; Boom Truck [16 h]; Electrician [15.59 h]; RMU, 13.8KV [0.34] | 17,110.37 |  | 0.0032683254391927 | Cons. | Z3 | MV | Cons |  |  | SUB.C | Cust. Rd 04&05 | MV |
|  | Units Substation | **Units Substation** |  | 2026-10-29 | 2026-12-19 |  |  |  |  |  |  |  |  |  |  |  |  |  |  |  |  |  |  |  |  |
| B2 33 73 00.01.15 |  | Land Adjustment | 3d | 2026-10-29 | 2026-11-02 | B2 33 73 00.02.15 |  |  |  |  | 93.36d | 1d | Labor [31.18 h]; Foreman [15.59 h]; Operator [31.18 h]; Surveyor [7.8 h]; Surveyor Helper [7.8 h]; Excavator (With Bucket) [16 h]; Water Tanker [16 h]; Dump Truck [16 h]; Roller Compactor [16 h]; Unit Substation 13.8/0.4 K V, 500kVA [0.17] | 19,047.71 |  | 0.00325611262400754 | Cons. | Z3 | MV | Cons |  |  | SUB.C | Cust. Rd 04&05 | MV |
| B2 33 73 00.01.17 |  | Foundation Works & Curing | 4d | 2026-11-03 | 2026-11-08 | B2 33 73 00.01.15, B2 33 73 00.02.17 |  |  |  |  | 94.36d | 31.45d | Labor [46.78 h]; Foreman [23.39 h]; Laboratory Officer [23.39 h]; Carpenter [23.39 h]; Steelfixer [23.39 h]; Mason [23.39 h]; Unit Substation 13.8/0.4 K V, 500kVA [0.17] | 19,047.71 |  | 0.00325611262400754 | Cons. | Z3 | MV | Cons |  |  | SUB.C | Cust. Rd 04&05 | MV |
| B2 33 73 00.01.19 |  | Installation of Unit Substation 13.8/0.4 K V | 3d | 2026-12-15 | 2026-12-19 | B2 33 73 00.01.17, B2 33 73 00.02.19, B2 33 73 00.01.85 SS |  |  |  |  | 62.91d | 0d | Labor [31.18 h]; Operator [31.18 h]; Boom Truck [16 h]; Electrician [15.59 h]; Unit Substation 13.8/0.4 K V, 500kVA [0.33] | 38,095.41 |  | 0.00651222524801507 | Cons. | Z3 | MV | Cons |  |  | SUB.C | Cust. Rd 04&05 | MV |
|  | LV Network | **Low Voltage Network** |  | 2026-10-22 | 2026-12-07 |  |  |  |  |  |  |  |  |  |  |  |  |  |  |  |  |  |  |  |  |
|  | Duct Banks | **Duct Banks** |  | 2026-10-22 | 2026-12-07 |  |  |  |  |  |  |  |  |  |  |  |  |  |  |  |  |  |  |  |  |
|  | 4 Way | **4 Way** |  | 2026-10-22 | 2026-12-07 |  |  |  |  |  |  |  |  |  |  |  |  |  |  |  |  |  |  |  |  |
| B2.33 71 00 02 127 |  | Excavation | 3d | 2026-10-22 | 2026-10-26 | B2.31 23 00.641 |  |  |  |  | 21d | 0d | Labor [46.78 h]; Foreman [23.39 h]; Operator [46.78 h]; Surveyor [23.39 h]; Surveyor Helper [23.39 h]; Excavator (With Bucket) [24 h]; Water Tanker [24 h]; Dump Truck [24 h]; Plate Compactor [24 h]; Excavation for Trench size 60cm wide and 65cm deep ( for 2 cables); Duct bank for LV cables UPVC (4xDia. 110mm) [12.4]; SL LV Excavation for Trench size 60cm wide and 65cm deep ( for 2 cables) | 5,225.87 |  | 0.00384843522581632 | Cons. | Z3 | LV | Cons | Cbl&Dct | allElec | SUB.C | Cust. Rd 04&05 | LV |
| B2.33 71 00 02 128 |  | Shuttering, Steel Fixing Incl. UPVC Pipe & Conc. Cast | 3d | 2026-10-26 | 2026-10-29 | B2.33 71 00 02 127 |  |  |  |  | 93d | 30.68d | Labor [77.96 h]; Laboratory Officer [38.98 h]; Carpenter [38.98 h]; Steelfixer [38.98 h]; Mason [38.98 h]; Surveyor [38.98 h]; Surveyor Helper [38.98 h]; Excavation for Trench size 60cm wide and 65cm deep ( for 2 cables); Duct bank for LV cables UPVC (4xDia. 110mm) [37.2]; SL LV Excavation for Trench size 60cm wide and 65cm deep ( for 2 cables) | 15,677.61 |  | 0.011545305677449 | Cons. | Z3 | LV | Cons | Cbl&Dct | allElec | SUB.C | Cust. Rd 04&05 | LV |
| B2.33 71 00 02 129 |  | Backfilling & Warrning Tape | 3d | 2026-12-05 | 2026-12-07 | B2.33 71 00 02 128, B2.33 71 00 02 51 |  |  |  |  | 62.32d | 0d | Labor [62.37 h]; Foreman [31.18 h]; Operator [124.74 h]; Surveyor [31.18 h]; Surveyor Helper [31.18 h]; Loader [32 h]; Water Tanker [32 h]; Dump Truck [32 h]; Plate Compactor [32 h]; Roller Compactor [32 h]; Excavation for Trench size 60cm wide and 65cm deep ( for 2 cables); Duct bank for LV cables UPVC (4xDia. 110mm) [12.4]; SL LV Excavation for Trench size 60cm wide and 65cm deep ( for 2 cables) | 5,225.87 |  | 0.00384843522581632 | Cons. | Z3 | LV | Cons | Cbl&Dct | allElec | SUB.C | Cust. Rd 04&05 | LV |
|  | Cables | **Cables** |  | 2026-10-26 | 2026-10-28 |  |  |  |  |  |  |  |  |  |  |  |  |  |  |  |  |  |  |  |  |
|  | 4C,10+1C,10mm2 | **4C,10+1C,10mm2** |  | 2026-10-26 | 2026-10-28 |  |  |  |  |  |  |  |  |  |  |  |  |  |  |  |  |  |  |  |  |
| B2.33 71 00 01 14 |  | Cable Pulling | 2d | 2026-10-26 | 2026-10-28 | B2.33 71 49.23.86, B2.33 71 00 01 11 |  |  |  |  | 46.08d | 0d | Labor [62.37 h]; Foreman [31.18 h]; Surveyor [31.18 h]; Surveyor Helper [31.18 h]; Electrician [31.18 h]; Cable, Copper 4x10mm2/ CU/XLPE/SWA/PVC + 1x10mm2 CU/PVC [1535.55] | 95,723.28 |  | 0.0182956258973869 | Cons. | Z3 | LV | Cons | Cbl&Dct | allElec | SUB.C | Cust. Rd 04&05 | LV |
|  | LV Panels | **0.6/1 KV Low Voltage Distribution Panels** |  | 2026-10-28 | 2026-11-23 |  |  |  |  |  |  |  |  |  |  |  |  |  |  |  |  |  |  |  |  |
| B2.33 71 26 30 |  | Land Adjustment | 2d | 2026-10-28 | 2026-10-31 | B2.33 71 00 01 14 |  |  |  |  | 46.08d | 0d | Labor [31.18 h]; Foreman [15.59 h]; Operator [31.18 h]; Surveyor [7.8 h]; Surveyor Helper [7.8 h]; Excavator (With Bucket) [16 h]; Water Tanker [16 h]; Dump Truck [16 h]; Roller Compactor [16 h]; Unit Substation 13.8/0.4 K V, 500kVA [0.17] | 19,047.71 |  | 0.00325611262400754 | Cons. | Z3 | LV | Cons | Cbl&Dct | allElec | SUB.C | Cust. Rd 04&05 | LV |
| B2.33 71 26 31 |  | Foundation Works & Curing | 3d | 2026-11-05 | 2026-11-09 | B2.33 71 26 30, B2.33 71 26 34 |  |  |  |  | 46.08d | 10.76d | Labor [46.78 h]; Foreman [23.39 h]; Laboratory Officer [23.39 h]; Carpenter [23.39 h]; Steelfixer [23.39 h]; Mason [23.39 h]; Unit Substation 13.8/0.4 K V, 500kVA [0.17] | 19,047.71 |  | 0.00325611262400754 | Cons. | Z3 | LV | Cons | Cbl&Dct | allElec | SUB.C | Cust. Rd 04&05 | LV |
| B2.33 71 26 29 |  | Installation of 0.6/1 KV Low Voltage Distribution Panels | 2d | 2026-11-22 | 2026-11-23 | B2.33 71 26 31, B2.33 71 26 32, B2.33 71 00 01 20 |  |  |  |  | 35.32d | 22d | Labor [31.18 h]; Operator [31.18 h]; Boom Truck [16 h]; Electrician [15.59 h]; 0.6/1 KV Low Voltage Distribution Panels for Industrial UPS - Cameras [1] | 8,223.7 |  | 0.00157203882286756 | Cons. | Z3 | LV | Cons | Cbl&Dct | allElec | SUB.C | Cust. Rd 04&05 | LV |

| ID | WBS | Activity | Duration | Start | Finish | Predecessors | Total float | Free float | Resources | Cost | Weight % | DMM2 Weekly Progress | DMM2 Zones | Networks & Stations | DMM2 Phases | Networks Components | All Electrical Scope | Subcontractors works | Dmm2 Roads | Yellow Sheet |
| --- | --- | --- | --- | --- | --- | --- | --- | --- | --- | --- | --- | --- | --- | --- | --- | --- | --- | --- | --- | --- |
|  | LV Pillars | **0.6/1 KV Low Voltage Distribution Pillars** |  | 2026-10-31 | 2026-11-21 |  |  |  |  |  |  |  |  |  |  |  |  |  |  |  |
| B2.33 71 26 33 |  | Land Adjustment | 2d | 2026-10-31 | 2026-11-02 | B2.33 71 26 30 | 46.08d | 0d | Labor [31.18 h]; Foreman [15.59 h]; Operator [31.18 h]; Surveyor [7.8 h]; Surveyor Helper [7.8 h]; Excavator (With Bucket) [16 h]; Water Tanker [16 h]; Dump Truck [16 h]; Roller Compactor [16 h]; RMU, 13.8KV [0.16] | 8,183.22 | 0.00156311216657044 | Cons. | Z3 | LV | Cons | Cbl&Dct | allElec | SUB.C | Cust. Rd 04&05 | LV |
| B2.33 71 26 34 |  | Foundation Works & Curing | 3d | 2026-11-02 | 2026-11-05 | B2.33 71 26 33 | 46.08d | 0d | Labor [46.78 h]; Foreman [23.39 h]; Laboratory Officer [23.39 h]; Carpenter [23.39 h]; Steelfixer [23.39 h]; Mason [23.39 h]; RMU, 13.8KV [0.16] | 8,183.22 | 0.00156311216657044 | Cons. | Z3 | LV | Cons | Cbl&Dct | allElec | SUB.C | Cust. Rd 04&05 | LV |
| B2.33 71 26 32 |  | Installation of 0.6/1 KV Low Voltage Distribution Pillars | 2d | 2026-11-19 | 2026-11-21 | B2.33 71 26 34, B2.33 71 26 23 | 35.32d | 0d | Labor [31.18 h]; Operator [31.18 h]; Boom Truck [16 h]; Electrician [15.59 h]; 0.6/1 KV Low Voltage Distribution Pillars with 5 Outgoing feeders rated 200 Ampers Fuse type [2.33] | 30,404.52 | 0.00249090658552958 | Cons. | Z3 | LV | Cons | Cbl&Dct | allElec | SUB.C | Cust. Rd 04&05 | LV |
|  | Street Lighting | **Street Lighting** |  | 2026-10-26 | 2026-12-30 |  |  |  |  |  |  |  |  |  |  |  |  |  |  |  |
|  | Duct Banks | **Duct Banks** |  | 2026-10-26 | 2026-11-07 |  |  |  |  |  |  |  |  |  |  |  |  |  |  |  |
|  | 2 Way | **2 Way** |  | 2026-10-26 | 2026-11-07 |  |  |  |  |  |  |  |  |  |  |  |  |  |  |  |
| B2.33 71 00 02 73 |  | Excavation | 3d | 2026-10-26 | 2026-10-29 | B2.33 71 00 02 127 | 21d | 0d | Labor [46.78 h]; Foreman [23.39 h]; Operator [46.78 h]; Surveyor [23.39 h]; Surveyor Helper [23.39 h]; Excavator (With Bucket) [24 h]; Water Tanker [24 h]; Dump Truck [24 h]; Plate Compactor [24 h]; SL Excavation for Trench size 40cm wide and 65cm deep (for 1 cable); Road Crossing Duct for Street Lighting cables UPVC (2xDia. 110mm) [33.4] | 9,208.14 | 0.0034843117378167 | Cons. | Z3 | SL | Cons | Cables | allElec | SUB.C | Cust. Rd 04&05 | SL |
| B2.33 71 00 02 74 |  | Shuttering, Steel Fixing Incl. UPVC Pipe & Conc. Cast | 3d | 2026-10-29 | 2026-11-02 | B2.33 71 00 02 73 | 22d | 1d | Labor [46.78 h]; Laboratory Officer [23.39 h]; Carpenter [23.39 h]; Steelfixer [23.39 h]; Mason [23.39 h]; Surveyor [23.39 h]; Surveyor Helper [23.39 h]; SL Excavation for Trench size 40cm wide and 65cm deep (for 1 cable); Road Crossing Duct for Street Lighting cables UPVC (2xDia. 110mm) [100.2] | 27,624.41 | 0.0104529352134501 | Cons. | Z3 | SL | Cons | Cables | allElec | SUB.C | Cust. Rd 04&05 | SL |
| B2.33 71 00 02 75 |  | Backfilling & Warrning Tape | 3d | 2026-11-03 | 2026-11-07 | B2.33 71 00 02 74, B2.33 71 00 02 78 | 21d | 0d | Labor [62.37 h]; Foreman [31.18 h]; Operator [124.74 h]; Surveyor [31.18 h]; Surveyor Helper [31.18 h]; Loader [32 h]; Water Tanker [32 h]; Dump Truck [32 h]; Plate Compactor [32 h]; Roller Compactor [32 h]; SL Excavation for Trench size 40cm wide and 65cm deep (for 1 cable); Road Crossing Duct for Street Lighting cables UPVC (2xDia. 110mm) [33.4] | 9,208.14 | 0.0034843117378167 | Cons. | Z3 | SL | Cons | Cables | allElec | SUB.C | Cust. Rd 04&05 | SL |
|  | Drawpits | **Drawpits** |  | 2026-10-26 | 2026-11-03 |  |  |  |  |  |  |  |  |  |  |  |  |  |  |  |
| B2.33 71 00 02 76 |  | Excavation | 2d | 2026-10-26 | 2026-10-28 | B2.33 71 00 02 73 SS | 21d | 0d | Labor [31.18 h]; Foreman [15.59 h]; Operator [31.18 h]; Surveyor [15.59 h]; Surveyor Helper [15.59 h]; Excavator (With Bucket) [16 h]; Water Tanker [16 h]; Dump Truck [16 h]; Plate Compactor [16 h]; Drawpit with medium duty steel cover, size600x600x900mm, [2.43] | 14,384.57 | 0.0025348715507172 | Cons. | Z3 | SL | Cons | Cables | allElec | SUB.C | Cust. Rd 04&05 | SL |
| B2.33 71 00 02 77 |  | Drawpits Installation | 2d | 2026-10-28 | 2026-10-31 | B2.33 71 00 02 76 | 21d | 0d | Labor [31.18 h]; Laboratory Officer [15.59 h]; Carpenter [15.59 h]; Steelfixer [15.59 h]; Mason [15.59 h]; Surveyor [15.59 h]; Surveyor Helper [15.59 h]; Drawpit with medium duty steel cover, size600x600x900mm, [7.28] | 43,153.72 | 0.0076046146521516 | Cons. | Z3 | SL | Cons | Cables | allElec | SUB.C | Cust. Rd 04&05 | SL |
| B2.33 71 00 02 78 |  | Backfilling & Warrning Tape | 3d | 2026-10-31 | 2026-11-03 | B2.33 71 00 02 77 | 21d | 0d | Labor [46.78 h]; Foreman [23.39 h]; Operator [93.55 h]; Surveyor [23.39 h]; Surveyor Helper [23.39 h]; Loader [24 h]; Water Tanker [24 h]; Dump Truck [24 h]; Plate Compactor [24 h]; Roller Compactor [24 h]; Drawpit with medium duty steel cover, size600x600x900mm, [2.43] | 14,384.57 | 0.0025348715507172 | Cons. | Z3 | SL | Cons | Cables | allElec | SUB.C | Cust. Rd 04&05 | SL |
|  | Cables | **Cables** |  | 2026-11-07 | 2026-12-30 |  |  |  |  |  |  |  |  |  |  |  |  |  |  |  |
|  | 4C,10+1C,10mm2 | **4C,10+1C,10mm2** |  | 2026-11-07 | 2026-12-30 |  |  |  |  |  |  |  |  |  |  |  |  |  |  |  |
| B2.33 71 19 162 |  | Land Adjustment | 2d | 2026-11-07 | 2026-11-09 | B2 33 73 00.01.15, B2.33 71 16.88 | 90d | 0d | Labor [77.96 h]; Foreman [38.98 h]; Operator [31.18 h]; Surveyor [7.8 h]; Surveyor Helper [7.8 h]; Excavator (With Bucket) [40 h]; Water Tanker [40 h]; Dump Truck [40 h]; Roller Compactor [40 h]; SL Cable, Copper 4x10mm2/ CU/XLPE/SWA/PVC + 1x10mm2 CU/PVC [416.5] | 25,963.96 | 0.00496258855349975 | Cons. | Z3 | SL | Cons | Cables | allElec | SUB.C | Cust. Rd 04&05 | SL |
| B2.33 71 49.23.162 |  | Cable Pulling | 5d | 2026-11-09 | 2026-11-15 | B2.33 71 19 162 | 90d | 37.09d | Labor [77.96 h]; Foreman [38.98 h]; Surveyor [38.98 h]; Surveyor Helper [38.98 h]; Electrician [38.98 h]; SL Cable, Copper 4x10mm2/ CU/XLPE/SWA/PVC + 1x10mm2 CU/PVC [1249.49] | 77,890.96 | 0.0148875878281853 | Cons. | Z3 | SL | Cons | Cables | allElec | SUB.C | Cust. Rd 04&05 | SL |
| B2.33 71 19 172 |  | Backfilling | 2d | 2026-12-28 | 2026-12-30 | B2.33 71 49.23.162, B2.33 71 16.62 | 52.91d | 0d | Labor [93.55 h]; Foreman [46.78 h]; Operator [93.55 h]; Surveyor [46.78 h]; Surveyor Helper [46.78 h]; Loader [48 h]; Water Tanker [48 h]; Dump Truck [48 h]; Plate Compactor [48 h]; SL Cable, Copper 4x10mm2/ CU/XLPE/SWA/PVC + 1x10mm2 CU/PVC [416.5] | 25,963.96 | 0.00496258855349975 | Cons. | Z3 | SL | Cons | Cables | allElec | SUB.C | Cust. Rd 04&05 | SL |
|  | SL Poles | **SL Poles** |  | 2026-10-31 | 2026-11-12 |  |  |  |  |  |  |  |  |  |  |  |  |  |  |  |
|  | Pole (10 M Sngl Arm) | **Pole (10 M Single Arm)** |  | 2026-10-31 | 2026-11-12 |  |  |  |  |  |  |  |  |  |  |  |  |  |  |  |
| B2.33 71 16.87 |  | Excavation | 3d | 2026-10-31 | 2026-11-03 | B2.33 71 00.291, B2.33 71 16.116_R | 23d | 0d | Labor [46.78 h]; Foreman [23.39 h]; Operator [46.78 h]; Surveyor [23.39 h]; Surveyor Helper [23.39 h]; Excavator (With Bucket) [24 h]; Dump Truck [24 h]; Lighting poles with 1 arm, height of ( 10) meters [6.6] | 58,898.5 | 0.0112471278804954 | Cons. | Z3 | SL | Cons | Pls&Lmn | allElec | SUB.C | Cust. Rd 04&05 | SL |
| B2.33 71 16.88 |  | PC & RC Foundation | 3d | 2026-11-03 | 2026-11-07 | B2.33 71 16.87 | 23d | 0d | Labor [77.96 h]; Foreman [38.98 h]; Laboratory Officer [38.98 h]; Carpenter [38.98 h]; Steelfixer [38.98 h]; Mason [38.98 h]; Lighting poles with 1 arm, height of ( 10) meters [6.6] | 58,898.5 | 0.0112471278804954 | Cons. | Z3 | SL | Cons | Pls&Lmn | allElec | SUB.C | Cust. Rd 04&05 | SL |
| B2.33 71 16.89 |  | Lighting Poles Installation Incl power box, Cables | 3d | 2026-11-07 | 2026-11-10 | B2.33 71 16.88 | 23d | 0d | Labor [93.55 h]; Operator [93.55 h]; Mobile Crane [48 h]; Electrician [46.78 h]; Lighting poles with 1 arm, height of ( 10) meters [13.2] | 117,797 | 0.0224942557609906 | Cons. | Z3 | SL | Cons | Pls&Lmn | allElec | SUB.C | Cust. Rd 04&05 | SL |
| B2.26.56.19.15 |  | Lighting Luminares Inst | 2d | 2026-11-10 | 2026-11-12 | B2.33 71 16.89 | 23d | 0d | Labor [62.37 h]; Operator [62.37 h]; Manlift [32 h]; Street Lighting( LED), Lamp Lumen: 14560, Luminare Lumen:12700 , complete with control gear and lamp, (80) WATT. [30.11] | 27,918.13 | 0.0047113256383061 | Cons. | Z3 | SL | Cons | Pls&Lmn | allElec | SUB.C | Cust. Rd 04&05 | SL |
| B2.33 71 16.90 |  | Backfilling, Grouting & Chamfering | 2d | 2026-11-10 | 2026-11-12 | B2.26.56.19.15 SS | 23d | 0d | Labor [93.55 h]; Foreman [46.78 h]; Mason [46.78 h]; Operator [93.55 h]; Surveyor [46.78 h]; Surveyor Helper [46.78 h]; Loader [48 h]; Water Tanker [48 h]; Dump Truck [48 h]; Plate Compactor [48 h]; Lighting poles with 1 arm, height of ( 10) meters [6.6] | 58,898.5 | 0.0112471278804954 | Cons. | Z3 | SL | Cons | Pls&Lmn | allElec | SUB.C | Cust. Rd 04&05 | SL |

| ID | WBS | Activity | Duration | Start | Finish | Predecessors | Complete | Total float | Free float | Resources | Cost | Actual cost | Weight % | DMM2 Weekly Progress | DMM2 Zones | Networks & Stations | DMM2 Phases | Networks Components | All Electrical Scope | Subcontractors works | Dmm2 Roads | Yellow Sheet |
| --- | --- | --- | --- | --- | --- | --- | --- | --- | --- | --- | --- | --- | --- | --- | --- | --- | --- | --- | --- | --- | --- | --- |
|  | Telecommunication | **Telecommunication Network** |  | 2026-07-02 | 2026-11-19 |  |  |  |  |  |  |  |  |  |  |  |  |  |  |  |  |  |
|  | Ducts | **Ducts** |  | 2026-07-02 | 2026-11-11 |  |  |  |  |  |  |  |  |  |  |  |  |  |  |  |  |  |
|  | (6*50mm) | **Size (6*50mm) HDPE ducts** |  | 2026-10-29 | 2026-11-08 |  |  |  |  |  |  |  |  |  |  |  |  |  |  |  |  |  |
| B2.1.33 81 26.150 |  | Excavation | 2d | 2026-10-29 | 2026-11-01 | B2.33 71 00 02 76, B2.33 71 00 02 73 |  | 46d | 0d | Labor [31.18 h]; Foreman [15.59 h]; Operator [31.18 h]; Surveyor [15.59 h]; Surveyor Helper [15.59 h]; Excavator (With Bucket) [16 h]; Water Tanker [16 h]; Dump Truck [16 h]; Plate Compactor [16 h]; (6*50mm) HDPE ducts [125.82] | 35,460.35 |  | 0.00690393952512995 | Cons. | Z3 | Telecom | Cons | DCT&MNH | allElec | SUB.C | Cust. Rd 04&05 | TEL |
| B2.1.33 81 26.151 |  | HDPE Pipe, Shuttering, Steel Fixing & Conc. Cast | 3d | 2026-11-01 | 2026-11-04 | B2.1.33 81 26.150 |  | 50d | 0d | Labor [93.55 h]; Laboratory Officer [46.78 h]; Carpenter [46.78 h]; Steelfixer [46.78 h]; Mason [46.78 h]; Surveyor [46.78 h]; Surveyor Helper [46.78 h]; (6*50mm) HDPE ducts [377.45] | 106,381.04 |  | 0.0207118185753898 | Cons. | Z3 | Telecom | Cons | DCT&MNH | allElec | SUB.C | Cust. Rd 04&05 | TEL |
| B2.1.33 81 26.152 |  | Backfilling & Warrning Tape | 3d | 2026-11-04 | 2026-11-08 | B2.1.33 81 26.151 |  | 50d | 3d | Labor [77.96 h]; Foreman [38.98 h]; Operator [155.92 h]; Surveyor [38.98 h]; Surveyor Helper [38.98 h]; Loader [40 h]; Water Tanker [40 h]; Dump Truck [40 h]; Plate Compactor [40 h]; Roller Compactor [40 h]; (6*50mm) HDPE ducts [125.82] | 35,460.35 |  | 0.00690393952512995 | Cons. | Z3 | Telecom | Cons | DCT&MNH | allElec | SUB.C | Cust. Rd 04&05 | TEL |
|  | (6*50mm+2*32mm) | **Size (6*50mm+2*32mm) HDPE ducts** |  | 2026-11-01 | 2026-11-10 |  |  |  |  |  |  |  |  |  |  |  |  |  |  |  |  |  |
| B2.1.33 81 26.153 |  | Excavation | 2d | 2026-11-01 | 2026-11-03 | B2.1.33 81 26.150 |  | 46d | 0d | Labor [31.18 h]; Foreman [15.59 h]; Operator [31.18 h]; Surveyor [15.59 h]; Surveyor Helper [15.59 h]; Excavator (With Bucket) [16 h]; Water Tanker [16 h]; Dump Truck [16 h]; Plate Compactor [16 h]; (6*50mm+2*32mm) HDPE ducts [48.51] | 21,251.23 |  | 0.00243727564627162 | Cons. | Z3 | Telecom | Cons | DCT&MNH | allElec | SUB.C | Cust. Rd 04&05 | TEL |
| B2.1.33 81 26.154 |  | HDPE Pipe, Shuttering, Steel Fixing & Conc. Cast | 3d | 2026-11-03 | 2026-11-07 | B2.1.33 81 26.153 |  | 48d | 0d | Labor [46.78 h]; Laboratory Officer [23.39 h]; Carpenter [23.39 h]; Steelfixer [23.39 h]; Mason [23.39 h]; Surveyor [23.39 h]; Surveyor Helper [23.39 h]; (6*50mm+2*32mm) HDPE ducts [145.49] | 63,742.79 |  | 0.00731057705386804 | Cons. | Z3 | Telecom | Cons | DCT&MNH | allElec | SUB.C | Cust. Rd 04&05 | TEL |
| B2.1.33 81 26.155 |  | Backfilling & Warrning Tape | 3d | 2026-11-07 | 2026-11-10 | B2.1.33 81 26.154 |  | 48d | 6.02d | Labor [62.37 h]; Foreman [31.18 h]; Operator [124.74 h]; Surveyor [31.18 h]; Surveyor Helper [31.18 h]; Loader [32 h]; Water Tanker [32 h]; Dump Truck [32 h]; Plate Compactor [32 h]; Roller Compactor [32 h]; (6*50mm+2*32mm) HDPE ducts [48.51] | 21,251.23 |  | 0.00243727564627162 | Cons. | Z3 | Telecom | Cons | DCT&MNH | allElec | SUB.C | Cust. Rd 04&05 | TEL |
|  | (6*50mm+4*32mm) | **Size (6*50mm+4*32mm) HDPE ducts** |  | 2026-11-03 | 2026-11-11 |  |  |  |  |  |  |  |  |  |  |  |  |  |  |  |  |  |
| B2.1.33 81 26.156 |  | Excavation | 2d | 2026-11-03 | 2026-11-05 | B2.1.33 81 26.153 |  | 46d | 0d | Labor [31.18 h]; Foreman [15.59 h]; Operator [31.18 h]; Surveyor [15.59 h]; Surveyor Helper [15.59 h]; Excavator (With Bucket) [16 h]; Water Tanker [16 h]; Dump Truck [16 h]; Plate Compactor [16 h]; (6*50mm+4*32mm) HDPE ducts [15] | 7,441.11 |  | 0.00340443051603132 | Cons. | Z3 | Telecom | Cons | DCT&MNH | allElec | SUB.C | Cust. Rd 04&05 | TEL |
| B2.1.33 81 26.157 |  | HDPE Pipe, Shuttering, Steel Fixing & Conc. Cast | 2d | 2026-11-05 | 2026-11-08 | B2.1.33 81 26.156, B2.1.33 81 26.159 |  | 47d | 0d | Labor [31.18 h]; Laboratory Officer [15.59 h]; Carpenter [15.59 h]; Steelfixer [15.59 h]; Mason [15.59 h]; Surveyor [15.59 h]; Surveyor Helper [15.59 h]; (6*50mm+4*32mm) HDPE ducts [45] | 22,323.32 |  | 0.010213291548094 | Cons. | Z3 | Telecom | Cons | DCT&MNH | allElec | SUB.C | Cust. Rd 04&05 | TEL |
| B2.1.33 81 26.158 |  | Backfilling & Warrning Tape | 3d | 2026-11-08 | 2026-11-11 | B2.1.33 81 26.157 |  | 47d | 0d | Labor [46.78 h]; Foreman [23.39 h]; Operator [93.55 h]; Surveyor [23.39 h]; Surveyor Helper [23.39 h]; Loader [24 h]; Water Tanker [24 h]; Dump Truck [24 h]; Plate Compactor [24 h]; Roller Compactor [24 h]; (6*50mm+4*32mm) HDPE ducts [15] | 7,441.11 |  | 0.00340443051603132 | Cons. | Z3 | Telecom | Cons | DCT&MNH | allElec | SUB.C | Cust. Rd 04&05 | TEL |
|  | (2*32mm) | **Size (2*32mm) HDPE ducts** |  | 2026-07-02 | 2026-07-11 |  |  |  |  |  |  |  |  |  |  |  |  |  |  |  |  |  |
| B2.1.33 81 26.159 |  | Excavation | 3d | 2026-07-02 A | 2026-07-05 A | B2.31 23 00.591 | 100% |  |  | Labor [28.35 h]; Foreman [14.17 h]; Operator [28.35 h]; Surveyor [14.17 h]; Surveyor Helper [14.17 h]; Excavator (With Bucket) [16 h]; Water Tanker [16 h]; Dump Truck [16 h]; Plate Compactor [16 h]; (2*32mm) HDPE ducts [8.6] | 1,344.05 | 1,344.05 | 0.000194889802563824 | Cons. | Z3 | Telecom | Cons | DCT&MNH | allElec | SUB.C | Cust. Rd 04&05 | TEL |
| B2.1.33 81 26.160 |  | HDPE Pipe, Shuttering, Steel Fixing & Conc. Cast | 4d | 2026-07-04 A | 2026-07-07 A | B2.1.33 81 26.159 | 100% |  |  | Labor [28.35 h]; Laboratory Officer [14.17 h]; Carpenter [14.17 h]; Steelfixer [14.17 h]; Mason [14.17 h]; Surveyor [14.17 h]; Surveyor Helper [14.17 h]; (2*32mm) HDPE ducts [25.8] | 4,032.14 | 4,032.14 | 0.000584669407691468 | Cons. | Z3 | Telecom | Cons | DCT&MNH | allElec | SUB.C | Cust. Rd 04&05 | TEL |
| B2.1.33 81 26.161 |  | Backfilling & Warrning Tape | 6d | 2026-07-05 A | 2026-07-11 A | B2.1.33 81 26.160 | 100% |  |  | Labor [28.35 h]; Foreman [14.17 h]; Operator [56.7 h]; Surveyor [14.17 h]; Surveyor Helper [14.17 h]; Loader [16 h]; Water Tanker [16 h]; Dump Truck [16 h]; Plate Compactor [16 h]; Roller Compactor [16 h]; (2*32mm) HDPE ducts [8.6] | 1,344.05 | 1,344.05 | 0.000194889802563824 | Cons. | Z3 | Telecom | Cons | DCT&MNH | allElec | SUB.C | Cust. Rd 04&05 | TEL |
|  | Manholes | **Manholes** |  | 2026-11-03 | 2026-11-14 |  |  |  |  |  |  |  |  |  |  |  |  |  |  |  |  |  |
|  | Manhole Type 1 | **Manhole Type 1** |  | 2026-11-03 | 2026-11-11 |  |  |  |  |  |  |  |  |  |  |  |  |  |  |  |  |  |
| B2.31 23 00.627 |  | Excavation | 2d | 2026-11-03 | 2026-11-05 | B2.1.33 81 26.159, B2.1.33 81 26.156 SS |  | 46d | 0d | Labor [31.18 h]; Foreman [15.59 h]; Operator [31.18 h]; Surveyor [15.59 h]; Surveyor Helper [15.59 h]; Excavator (With Bucket) [16 h]; Water Tanker [16 h]; Dump Truck [16 h]; Plate Compactor [16 h]; Manhole Type 1 [1.24] | 8,766.4 |  | 0.00167335317103356 | Cons. | Z3 | Telecom | Cons | DCT&MNH | allElec | SUB.C | Cust. Rd 04&05 | TEL |
| B2.33 71 00.262 |  | Manhole Installation | 2d | 2026-11-05 | 2026-11-08 | B2.31 23 00.627 |  | 47d | 0d | Labor [31.18 h]; Laboratory Officer [15.59 h]; Carpenter [15.59 h]; Steelfixer [15.59 h]; Mason [15.59 h]; Surveyor [15.59 h]; Surveyor Helper [15.59 h]; Manhole Type 1 [3.72] | 26,299.19 |  | 0.00502005951310069 | Cons. | Z3 | Telecom | Cons | DCT&MNH | allElec | SUB.C | Cust. Rd 04&05 | TEL |
| B2.33 71 00.263 |  | Backfilling & Warrning Tape | 3d | 2026-11-08 | 2026-11-11 | B2.33 71 00.262 |  | 47d | 5.02d | Labor [46.78 h]; Foreman [23.39 h]; Operator [93.55 h]; Surveyor [23.39 h]; Surveyor Helper [23.39 h]; Loader [24 h]; Water Tanker [24 h]; Dump Truck [24 h]; Plate Compactor [24 h]; Roller Compactor [24 h]; Manhole Type 1 [1.24] | 8,766.4 |  | 0.00167335317103356 | Cons. | Z3 | Telecom | Cons | DCT&MNH | allElec | SUB.C | Cust. Rd 04&05 | TEL |
|  | Manhole Type 2 | **Manhole Type 2** |  | 2026-11-05 | 2026-11-14 |  |  |  |  |  |  |  |  |  |  |  |  |  |  |  |  |  |
| B2.31 23 00.628 |  | Excavation | 2d | 2026-11-05 | 2026-11-08 | B2.31 23 00.627 |  | 46d | 0d | Labor [31.18 h]; Foreman [15.59 h]; Operator [31.18 h]; Surveyor [15.59 h]; Surveyor Helper [15.59 h]; Excavator (With Bucket) [16 h]; Water Tanker [16 h]; Dump Truck [16 h]; Plate Compactor [16 h]; Manhole Type 2 [0.52] | 3,287.69 |  | 0.000634453248743172 | Cons. | Z3 | Telecom | Cons | DCT&MNH | allElec | SUB.C | Cust. Rd 04&05 | TEL |
| B2.33 71 00.264 |  | Manhole Installation | 2d | 2026-11-08 | 2026-11-10 | B2.31 23 00.628 |  | 48d | 1d | Labor [31.18 h]; Laboratory Officer [15.59 h]; Carpenter [15.59 h]; Steelfixer [15.59 h]; Mason [15.59 h]; Surveyor [15.59 h]; Surveyor Helper [15.59 h]; Manhole Type 2 [1.56] | 9,863.09 |  | 0.00190336462403523 | Cons. | Z3 | Telecom | Cons | DCT&MNH | allElec | SUB.C | Cust. Rd 04&05 | TEL |
| B2.33 71 00.265 |  | Backfilling & Warrning Tape | 2d | 2026-11-11 | 2026-11-14 | B2.33 71 00.264, B2.1.33 81 26.152, B2.1.33 81 26.158, B2.1.33 81 26.161 |  | 47d | 5.02d | Labor [31.18 h]; Foreman [15.59 h]; Operator [62.37 h]; Surveyor [15.59 h]; Surveyor Helper [15.59 h]; Loader [16 h]; Water Tanker [16 h]; Dump Truck [16 h]; Plate Compactor [16 h]; Roller Compactor [16 h]; Manhole Type 2 [0.52] | 3,287.69 |  | 0.000634453248743172 | Cons. | Z3 | Telecom | Cons | DCT&MNH | allElec | SUB.C | Cust. Rd 04&05 | TEL |

| ID | WBS | Activity | Duration | Start | Finish | Predecessors | Complete | Planned start | Planned finish | Total float | Free float | Resources | Cost | Actual cost | Weight % | DMM2 Weekly Progress | DMM2 Zones | Networks & Stations | DMM2 Phases | Networks Components | All Electrical Scope | Subcontractors works | Dmm2 Roads | Yellow Sheet |
| --- | --- | --- | --- | --- | --- | --- | --- | --- | --- | --- | --- | --- | --- | --- | --- | --- | --- | --- | --- | --- | --- | --- | --- | --- |
|  | Crossing Ducts | **Road Crossing Ducts** |  | 2026-11-08 | 2026-11-19 |  |  |  |  |  |  |  |  |  |  |  |  |  |  |  |  |  |  |  |
|  | 1 | **Size (6X50mm) HDPE** |  | 2026-11-08 | 2026-11-19 |  |  |  |  |  |  |  |  |  |  |  |  |  |  |  |  |  |  |  |
| B2.31 23 00.626 |  | Excavation | 2d | 2026-11-08 | 2026-11-10 | B2.31 23 00.628 |  |  |  | 46d | 0d | Labor [31.18 h]; Foreman [15.59 h]; Operator [31.18 h]; Surveyor [15.59 h]; Surveyor Helper [15.59 h]; Excavator (With Bucket) [16 h]; Water Tanker [16 h]; Dump Truck [16 h]; Plate Compactor [16 h]; Road crossing ducts, (6*50mm) HDPE [7.13] | 2,221.93 |  | 0.000381434848303997 | Cons. | Z3 | Telecom | Cons | DCT&MNH | allElec | SUB.C | Cust. Rd 04&05 | TEL |
| B2.33 71 00.260 |  | Shuttering, Steel Fixing Incl. UPVC Pipe & Conc. Cast | 2d | 2026-11-10 | 2026-11-12 | B2.31 23 00.626 |  |  |  | 46d | 4.02d | Labor [31.18 h]; Laboratory Officer [15.59 h]; Carpenter [15.59 h]; Steelfixer [15.59 h]; Mason [15.59 h]; Surveyor [15.59 h]; Surveyor Helper [15.59 h]; Road crossing ducts, (6*50mm) HDPE [21.37] | 6,660.61 |  | 0.00114341541939146 | Cons. | Z3 | Telecom | Cons | DCT&MNH | allElec | SUB.C | Cust. Rd 04&05 | TEL |
| B2.33 71 00.261 |  | Backfilling & Warrning Tape | 2d | 2026-11-17 | 2026-11-19 | B2.33 71 00.260, B2.33 71 00.263, B2.33 71 00.255, B2.1.33 81 26.155 |  |  |  | 41.98d | 0d | Labor [31.18 h]; Foreman [15.59 h]; Operator [62.37 h]; Surveyor [15.59 h]; Surveyor Helper [15.59 h]; Loader [16 h]; Water Tanker [16 h]; Dump Truck [16 h]; Plate Compactor [16 h]; Roller Compactor [16 h]; Road crossing ducts, (6*50mm) HDPE [7.13] | 2,221.93 |  | 0.000381434848303997 | Cons. | Z3 | Telecom | Cons | DCT&MNH | allElec | SUB.C | Cust. Rd 04&05 | TEL |
|  | Earth & Road Works | **Earth & Road Works** |  | 2025-12-05 | 2026-11-26 |  |  |  |  |  |  |  |  |  |  |  |  |  |  |  |  |  |  |  |
|  | Earth Works | **Earth Works** |  | 2025-12-05 | 2026-05-07 |  |  |  |  |  |  |  |  |  |  |  |  |  |  |  |  |  |  |  |
| B1.2.31 23 16.01.11 |  | Roadway Excavation | 121d | 2025-12-05 A | 2026-05-07 A | DMM2-Eng-MS-78 | 100% | 2025-12-06 | 2026-05-07 |  |  | Roadway Excavation for cuttings (all types of soil) [25567.3]; Labor [28.35 h]; Foreman [14.17 h]; Operator [28.35 h]; Surveyor [14.17 h]; Surveyor Helper [14.17 h]; Excavator (With Bucket) [16 h]; Water Tanker [16 h]; Dump Truck [16 h] | 381,617.71 | 381,617.71 | 4.66002141206449E-005 | Cons. | Z3 | Roads | Cons |  |  |  | Cust. Rd 04&05 |  |
| B1.2.31 23 23.01.11 |  | Embankment Backfiling | 118.03d | 2025-12-07 A | 2026-05-06 A | B1.2.31 23 16.01.11 | 100% |  |  |  |  | Embankment backfiling [11258.6]; Labor [42.52 h]; Foreman [21.26 h]; Operator [42.52 h]; Surveyor [21.26 h]; Surveyor Helper [21.26 h]; Loader [24 h]; Water Tanker [24 h]; Dump Truck [24 h]; Plate Compactor [24 h]; Roller Compactor [24 h] | 306,437.5 | 306,437.5 | 0.0406699804309311 | Cons. | Z3 | Roads | Cons |  |  |  | Cust. Rd 04&05 |  |
|  | Earth Layers | **Earth Layers** |  | 2026-02-18 | 2026-10-22 |  |  |  |  |  |  |  |  |  |  |  |  |  |  |  |  |  |  |  |
| B1.2.32 11 13.01.11 |  | Subgrade (65.00% Completed) | 164.9d | 2026-02-18 A | 2026-09-15 A | B1.2.31 23 23.01.11 | 100% |  |  |  |  | Subgrade [876.1]; Labor [20.27 h]; Foreman [10.14 h]; Operator [20.27 h]; Surveyor [10.14 h]; Surveyor Helper [10.14 h]; Grader [10.4 h]; Loader [10.4 h]; Water Tanker [10.4 h]; Dump Truck [10.4 h]; Plate Compactor [10.4 h]; Roller Compactor [10.4 h] | 26,153.33 | 26,153.33 | 0.0235944163031263 | Cons. | Z3 | Roads | Cons | Roads |  |  | Cust. Rd 04&05 | Sub |
| B1.2.32 11 23.01.11 |  | Aggregate Base Course (52.00% Completed) | 98d | 2026-05-20 A | 2026-09-15 A | B1.2.32 11 13.01.11 FF | 100% |  |  |  |  | Aggregate base course [467.25]; Labor [16.22 h]; Foreman [8.11 h]; Operator [16.22 h]; Surveyor [8.11 h]; Surveyor Helper [8.11 h]; Grader [8.32 h]; Loader [8.32 h]; Water Tanker [8.32 h]; Dump Truck [8.32 h]; Plate Compactor [8.32 h]; Roller Compactor [8.32 h] | 40,614.71 | 40,614.71 | 0.0444701115795358 | Cons. | Z3 | Roads | Cons | Roads |  |  | Cust. Rd 04&05 | Agg |
| B1.2.32 11 13.01.11_R |  | Subgrade(Rem) | 2d | 2026-10-21 | 2026-10-22 | B1.2.31 23 23.01.11, B1.2.32 11 13.01.11 |  |  |  | 111.32d | 0d | Subgrade [471.75]; Labor [10.91 h]; Foreman [5.46 h]; Operator [10.91 h]; Surveyor [5.46 h]; Surveyor Helper [5.46 h]; Grader [5.6 h]; Loader [5.6 h]; Water Tanker [5.6 h]; Dump Truck [5.6 h]; Plate Compactor [5.6 h]; Roller Compactor [5.6 h] | 14,082.56 |  | 0.0235944163031263 | Cons. | Z3 | Roads | Cons | Roads |  |  | Cust. Rd 04&05 | Sub |
| B1.2.32 11 23.01.11_R |  | Aggregate Base Course(Rem) | 2d | 2026-10-21 | 2026-10-22 | B1.2.32 11 13.01.11_R FF, B1.2.32 11 23.01.11 |  |  |  | 111.32d |  | Aggregate base course [431.31]; Labor [14.97 h]; Foreman [7.48 h]; Operator [14.97 h]; Surveyor [7.48 h]; Surveyor Helper [7.48 h]; Grader [7.68 h]; Loader [7.68 h]; Water Tanker [7.68 h]; Dump Truck [7.68 h]; Plate Compactor [7.68 h]; Roller Compactor [7.68 h] | 37,490.5 |  | 0.0444701115795358 | Cons. | Z3 | Roads | Cons | Roads |  |  | Cust. Rd 04&05 | Agg |
|  | Interlock | **Interlock** |  | 2026-11-10 | 2026-11-12 |  |  |  |  |  |  |  |  |  |  |  |  |  |  |  |  |  |  |  |
| B1.2.32 14 13.13.11 |  | 60mm thick - Interlocking Block Pavers | 2d | 2026-11-10 | 2026-11-12 | B2.33 71 16.90 SS, DMM2-Proc-Delv-7268 |  |  |  | 23d | 0d | 60mm thick - Interlocking block pavers for sidewalks and medians [320.79]; Labor [31.18 h]; Foreman [15.59 h]; Mason [15.59 h]; Operator [31.18 h]; JCB [16 h] | 21,405.58 |  | 0.0118838152924719 | Cons. | Z3 | Roads | Cons | Roads |  |  | Cust. Rd 04&05 |  |
|  | Curbstone | **Curbstone** |  | 2026-11-10 | 2026-11-26 |  |  |  |  |  |  |  |  |  |  |  |  |  |  |  |  |  |  |  |
|  | Pre Install | **Pre-Installation** |  | 2026-11-10 | 2026-11-16 |  |  |  |  |  |  |  |  |  |  |  |  |  |  |  |  |  |  |  |
| B2.31 23 00.301 |  | Excavation | 2d | 2026-11-10 | 2026-11-12 | B1.2.32 14 13.13.11 SS |  |  |  | 23d | 0d | Curb Stone, Type K1 [35.77]; Dropped Curb, Type K3 [6.55]; Edge Curb, Type K4 [38.02]; Heel Curb, Type K5 [30.41]; Transition Curb [0.26]; Labor [31.18 h]; Foreman [15.59 h]; Operator [31.18 h]; Surveyor [15.59 h]; Surveyor Helper [15.59 h]; JCB [16 h]; Water Tanker [16 h]; Dump Truck [16 h]; Plate Compactor [16 h] | 8,071.92 |  | 0.00452238811886739 | Cons. | Z3 | Roads | Cons | Roads |  |  | Cust. Rd 04&05 |  |
| B1.2.32 14 13.13.211 |  | PCC | 2d | 2026-11-11 | 2026-11-14 | B2.31 23 00.301 SS+1d |  |  |  | 27d | 0d | Curb Stone, Type K1 [35.77]; Dropped Curb, Type K3 [6.55]; Edge Curb, Type K4 [38.02]; Heel Curb, Type K5 [30.41]; Transition Curb [0.26]; Labor [31.18 h]; Mason [15.59 h]; Surveyor [15.59 h]; Surveyor Helper [15.59 h] | 8,071.92 |  | 0.00452238811886739 | Cons. | Z3 | Roads | Cons | Roads |  |  | Cust. Rd 04&05 |  |
| 32 16 13.0011 |  | Haunching | 2d | 2026-11-14 | 2026-11-16 | B1.2.32 14 13.13.211 |  |  |  | 27d | 0d | Curb Stone, Type K1 [35.77]; Dropped Curb, Type K3 [6.55]; Edge Curb, Type K4 [38.02]; Heel Curb, Type K5 [30.41]; Transition Curb [0.26]; Labor [31.18 h]; Carpenter [15.59 h]; Mason [15.59 h]; Surveyor [15.59 h]; Surveyor Helper [15.59 h] | 8,071.92 |  | 0.00452238811886739 | Cons. | Z3 | Roads | Cons | Roads |  |  | Cust. Rd 04&05 |  |
|  | Installation | **Installation** |  | 2026-11-16 | 2026-11-24 |  |  |  |  |  |  |  |  |  |  |  |  |  |  |  |  |  |  |  |
| B1.2.32 16.13.01.11 |  | Curb Stone, Type K1 | 3d | 2026-11-16 | 2026-11-19 | 32 16 13.0011 |  |  |  | 27d | 0d | Curb Stone, Type K1 [107.33]; Labor [77.96 h]; Foreman [38.98 h]; Mason [38.98 h]; Operator [77.96 h]; Surveyor [38.98 h]; Surveyor Helper [38.98 h]; JCB [40 h] | 8,103.97 |  | 0.00477983131685914 | Cons. | Z3 | Roads | Cons | Roads |  |  | Cust. Rd 04&05 |  |
| B1.2.32 16.13.02.10 |  | Dropped Curb, Type K3 | 1d | 2026-11-19 | 2026-11-21 | B1.2.32 16.13.01.11, 32 16 13.0011 |  |  |  | 27d | 0d | Dropped Curb, Type K3 [19.63]; Labor [46.78 h]; Foreman [23.39 h]; Mason [23.39 h]; Operator [46.78 h]; Surveyor [23.39 h]; Surveyor Helper [23.39 h]; JCB [24 h] | 1,585.45 |  | 0.000926549786437926 | Cons. | Z3 | Roads | Cons | Roads |  |  | Cust. Rd 04&05 |  |
| B1.2.32 16.13.03.11 |  | Edge Curb, Type K4 | 1d | 2026-11-21 | 2026-11-22 | B1.2.32 16.13.02.10, 32 16 13.0011 |  |  |  | 27d | 0d | Edge Curb, Type K4 [80.74]; Labor [31.18 h]; Foreman [15.59 h]; Mason [15.59 h]; Operator [31.18 h]; Surveyor [15.59 h]; Surveyor Helper [15.59 h]; JCB [16 h] | 6,096.19 |  | 0.00335722822195474 | Cons. | Z3 | Roads | Cons | Roads |  |  | Cust. Rd 04&05 |  |
| B1.2.32 16.13.0411 |  | Heel Curb, Type K5 | 1d | 2026-11-22 | 2026-11-23 | B1.2.32 16.13.03.11, 32 16 13.0011 |  |  |  | 27d | 0d | Heel Curb, Type K5 [89.84]; Labor [31.18 h]; Foreman [15.59 h]; Mason [15.59 h]; Operator [31.18 h]; Surveyor [15.59 h]; Surveyor Helper [15.59 h]; JCB [16 h] | 5,758.45 |  | 0.00303074043881546 | Cons. | Z3 | Roads | Cons | Roads |  |  | Cust. Rd 04&05 |  |
| B1.2.32 16.13.05.10 |  | Transition Curb | 1d | 2026-11-23 | 2026-11-24 | B1.2.32 16.13.0411, 32 16 13.0011 |  |  |  | 27d | 0d | Transition Curb [0.97]; Labor [46.78 h]; Foreman [23.39 h]; Mason [23.39 h]; Operator [46.78 h]; Surveyor [23.39 h]; Surveyor Helper [23.39 h]; JCB [24 h] | 78.42 |  | 4.76369923856089E-005 | Cons. | Z3 | Roads | Cons | Roads |  |  | Cust. Rd 04&05 |  |

| ID | WBS | Activity | Duration | Start | Finish | Predecessors | Complete | Remaining | Planned start | Planned finish | Total float | Free float | Resources | Cost | Actual cost | Weight % | DMM2 Weekly Progress | DMM2 Zones | Networks & Stations | DMM2 Phases | Networks Components | Dmm2 Roads | Yellow Sheet | UNASCO | Subcontractors works |
| --- | --- | --- | --- | --- | --- | --- | --- | --- | --- | --- | --- | --- | --- | --- | --- | --- | --- | --- | --- | --- | --- | --- | --- | --- | --- |
|  | Finishing | **Finishing** |  | 2026-11-24 | 2026-11-26 |  |  |  |  |  |  |  |  |  |  |  |  |  |  |  |  |  |  |  |  |
| 32 16 13.011 |  | Finishing, Fareface | 2d | 2026-11-24 | 2026-11-26 | B1.2.32 16.13.01.11, B1.2.32 16.13.02.10, B1.2.32 16.13.03.11, B1.2.32 16.13.0411, B1.2.32 16.13.05.10, 32 16 134 |  |  |  |  | 27d | 22d | Curb Stone, Type K1 [23.79]; Dropped Curb, Type K3 [4.36]; Edge Curb, Type K4 [25.34]; Heel Curb, Type K5 [19.96]; Transition Curb [0.18]; Labor [46.78 h]; Mason [23.39 h] | 5,356.23 |  | 0.0030042813952094 | Cons. | Z3 | Roads | Cons | Roads | Cust. Rd 04&05 |  |  |  |
|  | Asphalt Layers | **Asphalt Layers** |  | 2026-05-23 | 2026-10-25 |  |  |  |  |  |  |  |  |  |  |  |  |  |  |  |  |  |  |  |  |
| B1.2.32 11 26.01.11 |  | Bituminous Base Course including Prime Coat (MC1) and tack coat (RC2) (69.00% Completed) | 96d | 2026-05-23 A | 2026-09-15 A | B1.2.32 11 23.01.11 SS | 100% |  |  |  |  |  | Bituminous base course(Grading I - Class A) [424.81]; Labor [21.52 h]; Foreman [10.76 h]; Operator [21.52 h]; Surveyor [10.76 h]; Surveyor Helper [10.76 h]; Dump Truck [11.04 h]; Roller Compactor [11.04 h]; MC1/RC2 Sprayer [11.04 h] | 233,488.56 | 233,488.56 | 0.186667988686914 | Cons. | Z3 | Roads | Cons | Roads | Cust. Rd 04&05 | BBC |  |  |
| B1.2.32 11 26.01.11_R |  | Bituminous Base Course including Prime Coat (MC1) and tack coat (RC2)(Rem) | 2d | 2026-09-22 A | 2026-10-22 | B1.2.32 11 23.01.11_R SS, B1.2.32 11 26.01.11 | 21% | 1.58d | 2026-09-16 | 2026-09-17 | 54.74d | 0d | Bituminous base course(Grading I - Class A) [190.86]; Labor [9.67 h]; Foreman [4.83 h]; Operator [9.67 h]; Surveyor [4.83 h]; Surveyor Helper [4.83 h]; Dump Truck [4.96 h]; Roller Compactor [4.96 h]; MC1/RC2 Sprayer [4.96 h] | 104,900.66 | 87,979.03 | 0.186667988686914 | Cons. | Z3 | Roads | Cons | Roads | Cust. Rd 04&05 | BBC |  |  |
| B1.2.32 12 16.01.11 |  | Bituminous concrete Wearing Course, including tack coat (RC2) | 2d | 2026-10-22 | 2026-10-25 | B1.2.32 11 26.01.11_R |  |  |  |  | 54.74d | 0d | Bituminous concrete wearing course, after compaction(Grading I - Class A), including tack coat (RC2) [225.27]; Labor [31.18 h]; Foreman [15.59 h]; Operator [31.18 h]; Surveyor [15.59 h]; Surveyor Helper [15.59 h]; Dump Truck [16 h]; Roller Compactor [16 h]; MC1/RC2 Sprayer [16 h] | 132,915.8 |  | 0.0732831429681287 | Cons. | Z3 | Roads | Cons | Roads | Cust. Rd 04&05 | BWC |  |  |
|  | Pavement Marking | **Pavement Marking** |  | 2026-10-25 | 2026-11-07 |  |  |  |  |  |  |  |  |  |  |  |  |  |  |  |  |  |  |  |  |
| B1.2.32 17 23.02.11 |  | Retroreflective Thermoplastic Yellow, Traffic lines | 2d | 2026-10-25 | 2026-10-27 | B1.2.32 12 16.01.11 |  |  |  |  | 103.74d | 15.74d | Retroreflective Thermoplastic Yellow, Traffic lines [36.6]; Labor [31.18 h]; Mason [15.59 h]; Road Marking Machine [16 h] | 1,092.59 |  | 0.000549297209924508 | Cons. | Z3 | Roads | Cons | Roads | Cust. Rd 04&05 |  |  |  |
| B1.2.32 17 23.01.11 |  | Retroreflective Thermoplastic White Traffic lines | 2d | 2026-11-04 | 2026-11-07 | B1.2.32 12 16.01.11, B1.2.32 17 23.01.1 |  |  |  |  | 94.92d | 6.92d | Retroreflective Thermoplastic White Traffic lines [76.36]; Labor [46.78 h]; Mason [23.39 h]; Road Marking Machine [24 h] | 2,279.62 |  | 0.00114607616234092 | Cons. | Z3 | Roads | Cons | Roads | Cust. Rd 04&05 |  |  |  |
|  | Traffic Signs | **Traffic Signs** |  | 2026-11-10 | 2026-11-17 |  |  |  |  |  |  |  |  |  |  |  |  |  |  |  |  |  |  |  |  |
|  | Pre Install | **Pre-Installation** |  | 2026-11-10 | 2026-11-15 |  |  |  |  |  |  |  |  |  |  |  |  |  |  |  |  |  |  |  |  |
| B2.31 23 00.311 |  | Excavation | 2d | 2026-11-10 | 2026-11-12 | B2.31 23 00.301 SS |  |  |  |  | 23d | 0d | Traffic signs, ground mounted, 1 Sheet Alumenium, (breakaway) Single post [0.33]; Ground mounted, 1 Sheet Alumenium powder coated UV printed, Double post [0.5]; Labor [31.18 h]; Foreman [15.59 h]; Operator [31.18 h]; Surveyor [15.59 h]; Surveyor Helper [15.59 h]; JCB [16 h]; Water Tanker [16 h]; Dump Truck [16 h]; Plate Compactor [16 h] | 1,927.15 |  | 0.000968876205884639 | Cons. | Z3 | Roads | Cons | Roads | Cust. Rd 04&05 |  |  |  |
| 10 14 53.011 |  | Foundation | 2d | 2026-11-12 | 2026-11-15 | B2.31 23 00.311 |  |  |  |  | 88d | 0d | Traffic signs, ground mounted, 1 Sheet Alumenium, (breakaway) Single post [0.33]; Ground mounted, 1 Sheet Alumenium powder coated UV printed, Double post [0.5]; Labor [31.18 h]; Carpenter [15.59 h]; Steelfixer [15.59 h]; Mason [15.59 h]; Surveyor [15.59 h]; Surveyor Helper [15.59 h] | 1,927.15 |  | 0.000968876205884639 | Cons. | Z3 | Roads | Cons | Roads | Cust. Rd 04&05 |  |  |  |
|  | Installation | **Installation** |  | 2026-11-15 | 2026-11-17 |  |  |  |  |  |  |  |  |  |  |  |  |  |  |  |  |  |  |  |  |
| B1.2.10 14 14.0211 |  | Ground mounted, 1 Sheet Alumenium, Double post | 2d | 2026-11-15 | 2026-11-17 | 10 14 53.011, B1.2.32 17 23.02.11, B1.2.32 17 23.01.11, DMM2-Proc-Delv-7272 |  |  |  |  | 88d | 37.09d | Ground mounted, 1 Sheet Alumenium powder coated UV printed, Double post [1]; Labor [31.18 h]; Foreman [15.59 h]; Operator [31.18 h]; JCB [16 h] | 3,117.79 |  | 0.00156746676606269 | Cons. | Z3 | Roads | Cons | Roads | Cust. Rd 04&05 |  |  |  |
| B1.2.10 14 53.0111 |  | 1 Sheet Alumenium, Single post | 2d | 2026-11-15 | 2026-11-17 | 10 14 53.011, B1.2.32 17 23.02.11, B1.2.32 17 23.01.11 |  |  |  |  | 88d | 10.18d | Traffic signs, ground mounted, 1 Sheet Alumenium, (breakaway) Single post [1.73]; Labor [31.18 h]; Foreman [15.59 h]; Operator [31.18 h]; JCB [16 h] | 1,930.58 |  | 0.000970597222836956 | Cons. | Z3 | Roads | Cons | Roads | Cust. Rd 04&05 |  |  |  |
|  | Customs Road 06 | **Customs Road 06** |  | 2025-12-07 | 2026-12-26 |  |  |  |  |  |  |  |  |  |  |  |  |  |  |  |  |  |  |  |  |
|  | Wet Networks | **Wet Networks** |  | 2026-03-04 | 2026-10-25 |  |  |  |  |  |  |  |  |  |  |  |  |  |  |  |  |  |  |  |  |
|  | Stormwater Network | **Stormwater Network** |  | 2026-03-04 | 2026-10-25 |  |  |  |  |  |  |  |  |  |  |  |  |  |  |  |  |  |  |  |  |
|  | GRP | **GRP** |  | 2026-03-04 | 2026-05-24 |  |  |  |  |  |  |  |  |  |  |  |  |  |  |  |  |  |  |  |  |
|  | ?40011 | **?1400** |  | 2026-03-04 | 2026-05-24 |  |  |  |  |  |  |  |  |  |  |  |  |  |  |  |  |  |  |  |  |
|  | 1 | **Depth From 2.5m to 3.5m** |  | 2026-03-04 | 2026-05-24 |  |  |  |  |  |  |  |  |  |  |  |  |  |  |  |  |  |  |  |  |
| B6.33 42 11.34-1.11 |  | Excavation | 1.25d | 2026-03-04 A | 2026-03-05 A | B1.1.31 23 23.152 | 100% |  |  |  |  |  | Labor [28.35 h]; Foreman [14.17 h]; Operator [28.35 h]; Surveyor [14.17 h]; Surveyor Helper [14.17 h]; Excavator (With Bucket) [16 h]; Water Tanker [16 h]; Dump Truck [16 h]; Plate Compactor [16 h]; 2.51m - 3.5m [22.22] | 38,759.54 | 38,759.54 | 0.00766580356177879 | Cons. | Z3 | Storm | Cons | GRPs | Cust. Rd 06 | Strm | CS.UNSC | SUB.C |
| B6.33 42 11.34-1.13 |  | Sand Bedding | 0.5d | 2026-03-07 A | 2026-03-08 A | B6.33 42 11.34-1.11 | 100% |  |  |  |  |  | Labor [28.35 h]; Foreman [14.17 h]; Operator [56.7 h]; Surveyor [14.17 h]; Surveyor Helper [14.17 h]; Loader [16 h]; Water Tanker [16 h]; Dump Truck [16 h]; Plate Compactor [16 h]; 2.51m - 3.5m [5.55] | 9,683.6 | 9,683.6 | 0.00191520724937366 | Cons. | Z3 | Storm | Cons | GRPs | Cust. Rd 06 | Strm | CS.UNSC | SUB.C |
| B6.33 42 11.34-1.15 |  | Pipe Laying | 5.48d | 2026-03-08 A | 2026-03-16 A | B6.33 42 11.34-1.13 | 100% |  |  |  |  |  | Labor [28.35 h]; Foreman [14.17 h]; Plumber Helper [14.17 h]; Plumber [14.17 h]; Operator [14.17 h]; Surveyor [14.17 h]; Surveyor Helper [14.17 h]; Mobile Crane [16 h]; 2.51m - 3.5m [49.98] | 87,202.67 | 87,202.67 | 0.0172468143729312 | Cons. | Z3 | Storm | Cons | GRPs | Cust. Rd 06 | Strm | CS.UNSC | SUB.C |
| B6.33 42 11.34-1.17 |  | Embedment & Test | 12.52d | 2026-05-06 A | 2026-05-20 A | B6.33 42 11.34-1.15 | 100% |  |  |  |  |  | Labor [56.7 h]; Foreman [28.35 h]; Plumber Helper [28.35 h]; Plumber [28.35 h]; Operator [56.7 h]; Surveyor [28.35 h]; Surveyor Helper [28.35 h]; Loader [32 h]; Water Tanker [32 h]; Dump Truck [32 h]; Plate Compactor [32 h]; Roller Compactor [32 h]; 2.51m - 3.5m [22.22] | 38,759.54 | 38,759.54 | 0.00766580356177879 | Cons. | Z3 | Storm | Cons | GRPs | Cust. Rd 06 | Strm | CS.UNSC | SUB.C |
| B6.33 42 11.34-1.19 |  | Backfilling & Warrning Tape | 11.65d | 2026-05-11 A | 2026-05-24 A | B6.33 42 11.34-1.17 | 100% |  |  |  |  |  | Labor [70.87 h]; Foreman [35.44 h]; Operator [141.75 h]; Surveyor [35.44 h]; Surveyor Helper [35.44 h]; Loader [40 h]; Water Tanker [40 h]; Dump Truck [40 h]; Plate Compactor [40 h]; Roller Compactor [40 h]; 2.51m - 3.5m [11.12] | 19,392.35 | 19,392.35 | 0.00383538906303142 | Cons. | Z3 | Storm | Cons | GRPs | Cust. Rd 06 | Strm | CS.UNSC | SUB.C |

| ID | WBS | Activity | Duration | Start | Finish | Predecessors | Complete | Planned start | Planned finish | Total float | Resources | Cost | Actual cost | Weight % | DMM2 Weekly Progress | DMM2 Zones | Networks & Stations | DMM2 Phases | UNASCO | Networks Components | Subcontractors works | Dmm2 Roads | Yellow Sheet |
| --- | --- | --- | --- | --- | --- | --- | --- | --- | --- | --- | --- | --- | --- | --- | --- | --- | --- | --- | --- | --- | --- | --- | --- |
|  | Strom Manholes | **Manholes** |  | 2026-05-20 | 2026-10-25 |  |  |  |  |  |  |  |  |  |  |  |  |  |  |  |  |  |  |
|  | 3 | **?2000** |  | 2026-05-20 | 2026-10-25 |  |  |  |  |  |  |  |  |  |  |  |  |  |  |  |  |  |  |
|  | 3 | **Depth From 2.5m to 3.5m** |  | 2026-05-20 | 2026-10-25 |  |  |  |  |  |  |  |  |  |  |  |  |  |  |  |  |  |  |
| B6.33 05 39.01.3727 |  | Excavation & Compaction | 2d | 2026-05-20 A | 2026-05-21 A | B6.33 42 11.34-1.11 | 100% |  |  |  | Labor [28.35 h]; Foreman [14.17 h]; Operator [28.35 h]; Surveyor [14.17 h]; Surveyor Helper [14.17 h]; Excavator (With Bucket) [16 h]; Water Tanker [16 h]; Dump Truck [16 h]; Plate Compactor [16 h]; Storm MH depth 2.51 - 3.5m [0.63] | 10,765.08 | 10,765.08 | 0.00208346832855844 | Cons. | Z3 | Storm | Cons | CS.UNSC | Manhole | SUB.C | Cust. Rd 06 | Strm |
| B6.33 05 39.01.3737 |  | Blinding Conc, & RC Base | 3d | 2026-05-23 A | 2026-05-25 A | B6.33 05 39.01.3727 | 100% |  |  |  | Labor [42.52 h]; Foreman [21.26 h]; Laboratory Officer [21.26 h]; Carpenter [21.26 h]; Steelfixer [21.26 h]; Mason [21.26 h]; Storm MH depth 2.51 - 3.5m [0.42] | 7,095.17 | 7,095.17 | 0.00137319503473171 | Cons. | Z3 | Storm | Cons | CS.UNSC | Manhole | SUB.C | Cust. Rd 06 | Strm |
| B6.33 05 39.01.3747 |  | Manhole Installation (54.00% Completed) | 87d | 2026-06-07 A | 2026-09-15 A | B6.33 05 39.01.3737 | 100% |  |  |  | Labor [16.84 h]; Operator [16.84 h]; Surveyor [8.42 h]; Surveyor Helper [8.42 h]; Boom Truck [8.64 h]; Mobile Crane [8.64 h]; Storm MH depth 2.51 - 3.5m [1.06] | 18,143.27 | 18,143.27 | 0.00625042100380389 | Cons. | Z3 | Storm | Cons | CS.UNSC | Manhole | SUB.C | Cust. Rd 06 | Strm |
| B6.33 05 39.01.3757 |  | Test, Internal Finishing, Benching & Cover (33.33% Completed) | 86d | 2026-06-08 A | 2026-09-15 A | B6.33 05 39.01.3747 SS | 100% |  |  |  | Labor [20.79 h]; Foreman [10.39 h]; Plumber Helper [10.39 h]; Plumber [10.39 h]; Mason [10.39 h]; Storm MH depth 2.51 - 3.5m [0.14] | 2,364.82 | 2,364.82 | 0.00137319503473171 | Cons. | Z3 | Storm | Cons | CS.UNSC | Manhole | SUB.C | Cust. Rd 06 | Strm |
| B6.33 05 39.01.3767 |  | Backfilling (83.00% Completed) | 34.33d | 2026-08-06 A | 2026-09-15 A | B6.33 05 39.01.3757 SS | 100% |  |  |  | Labor [64.71 h]; Foreman [32.35 h]; Operator [64.71 h]; Surveyor [32.35 h]; Surveyor Helper [32.35 h]; Loader [33.2 h]; Water Tanker [33.2 h]; Dump Truck [33.2 h]; Plate Compactor [33.2 h]; Storm MH depth 2.51 - 3.5m [0.75] | 12,870.19 | 12,870.19 | 0.00300107232895791 | Cons. | Z3 | Storm | Cons | CS.UNSC | Manhole | SUB.C | Cust. Rd 06 | Strm |
| B6.33 05 39.01.3747_R |  | Manhole Installation(Rem) | 3d | 2026-10-14 A | 2026-10-17 A | B6.33 05 39.01.3737, B6.33 05 39.01.3747 | 100% |  |  |  | Labor [14.34 h]; Operator [14.34 h]; Surveyor [7.17 h]; Surveyor Helper [7.17 h]; Boom Truck [7.36 h]; Mobile Crane [7.36 h]; Storm MH depth 2.51 - 3.5m [0.91] | 15,455.38 | 15,455.38 | 0.00625042100380389 | Cons. | Z3 | Storm | Cons | CS.UNSC | Manhole | SUB.C | Cust. Rd 06 | Strm |
| B6.33 05 39.01.3767_R |  | Backfilling(Rem) | 3d | 2026-10-14 A | 2026-10-17 A | B6.33 05 39.01.3757_R SS, B6.33 05 39.01.3767, B6.33 05 39.01.3567_R | 100% |  |  |  | Labor [13.25 h]; Foreman [6.63 h]; Operator [13.25 h]; Surveyor [6.63 h]; Surveyor Helper [6.63 h]; Loader [6.8 h]; Water Tanker [6.8 h]; Dump Truck [6.8 h]; Plate Compactor [6.8 h]; Storm MH depth 2.51 - 3.5m [0.15] | 2,636.06 | 2,636.06 | 0.00300107232895791 | Cons. | Z3 | Storm | Cons | CS.UNSC | Manhole | SUB.C | Cust. Rd 06 | Strm |
| B6.33 05 39.01.3757_R |  | Test, Internal Finishing, Benching & Cover(Rem) | 3.67d | 2026-10-21 | 2026-10-25 | B6.33 05 39.01.3747_R SS, B6.33 05 39.01.3757 |  |  |  | 109.65d | Labor [41.58 h]; Foreman [20.79 h]; Plumber Helper [20.79 h]; Plumber [20.79 h]; Mason [20.79 h]; Storm MH depth 2.51 - 3.5m [0.28] | 4,730.35 |  | 0.00137319503473171 | Cons. | Z3 | Storm | Cons | CS.UNSC | Manhole | SUB.C | Cust. Rd 06 | Strm |
|  | Catch Basins | **Catch Basins** |  | 2026-03-09 | 2026-10-18 |  |  |  |  |  |  |  |  |  |  |  |  |  |  |  |  |  |  |
|  | Sing | **Single** |  | 2026-06-10 | 2026-10-15 |  |  |  |  |  |  |  |  |  |  |  |  |  |  |  |  |  |  |
| B6.33 05 40.01.490 |  | Excavation, Compaction & Vapour Barrier (80.00% Completed) | 84d | 2026-06-10 A | 2026-09-15 A | B6.33 05 39.01.3727 | 100% |  |  |  | Labor [24.95 h]; Foreman [12.47 h]; Operator [24.95 h]; Surveyor [12.47 h]; Surveyor Helper [12.47 h]; Excavator (With Bucket) [12.8 h]; Water Tanker [12.8 h]; Dump Truck [12.8 h]; Roller Compactor [12.8 h]; Single Catch basin [2.39] | 10,815.73 | 10,815.73 | 0.00296566869933904 | Cons. | Z3 | Storm | Cons | CS.UNSC | CBs | SUB.C | Cust. Rd 06 | Strm |
| B6.33 05 40.01.520 |  | Backfilling, DI Frame & Grate Cover Fixing (80.00% Completed) | 84d | 2026-06-10 A | 2026-09-15 A | B6.33 42 11.36-197 | 100% |  |  |  | Labor [62.37 h]; Foreman [31.18 h]; Operator [62.37 h]; Surveyor [31.18 h]; Surveyor Helper [31.18 h]; Loader [32 h]; Water Tanker [32 h]; Dump Truck [32 h]; Plate Compactor [32 h]; Single Catch basin [4.76] | 21,537.41 | 21,537.41 | 0.00590554897520555 | Cons. | Z3 | Storm | Cons | CS.UNSC | CBs | SUB.C | Cust. Rd 06 | Strm |
| B6.33 05 40.01.500 |  | Blinding Conc. (80.00% Completed) | 82d | 2026-06-13 A | 2026-09-15 A | B6.33 05 40.01.490 SS | 100% |  |  |  | Labor [24.95 h]; Foreman [12.47 h]; Laboratory Officer [12.47 h]; Carpenter [12.47 h]; Steelfixer [12.47 h]; Mason [12.47 h]; Single Catch basin [1.59] | 7,194.81 | 7,194.81 | 0.00197281439564727 | Cons. | Z3 | Storm | Cons | CS.UNSC | CBs | SUB.C | Cust. Rd 06 | Strm |
| B6.33 05 40.01.510 |  | Catch Basin Installation (80.00% Completed) | 80d | 2026-06-15 A | 2026-09-15 A | B6.33 05 40.01.500 SS | 100% |  |  |  | Labor [37.42 h]; Foreman [18.71 h]; Carpenter [18.71 h]; Steelfixer [18.71 h]; Mason [18.71 h]; Operator [37.42 h]; Surveyor [18.71 h]; Surveyor Helper [18.71 h]; Boom Truck [19.2 h]; Single Catch basin [7.15] | 32,306.11 | 32,306.11 | 0.00885832346280832 | Cons. | Z3 | Storm | Cons | CS.UNSC | CBs | SUB.C | Cust. Rd 06 | Strm |
| B6.33 05 40.01.490_R |  | Excavation, Compaction & Vapour Barrier(Rem) | 3d | 2026-09-20 A | 2026-10-10 A | B6.33 05 39.01.3727, B6.33 05 40.01.490 | 100% | 2026-09-16 | 2026-09-19 |  | Labor [6.24 h]; Foreman [3.12 h]; Operator [6.24 h]; Surveyor [3.12 h]; Surveyor Helper [3.12 h]; Excavator (With Bucket) [3.2 h]; Water Tanker [3.2 h]; Dump Truck [3.2 h]; Roller Compactor [3.2 h]; Single Catch basin [0.6] | 2,703.93 | 2,703.93 | 0.00296566869933904 | Cons. | Z3 | Storm | Cons | CS.UNSC | CBs | SUB.C | Cust. Rd 06 | Strm |
| B6.33 05 40.01.500_R |  | Blinding Conc.(Rem) | 3d | 2026-09-24 A | 2026-10-12 A | B6.33 05 40.01.490_R SS, B6.33 05 40.01.500 | 100% | 2026-09-16 | 2026-09-19 |  | Labor [6.24 h]; Foreman [3.12 h]; Laboratory Officer [3.12 h]; Carpenter [3.12 h]; Steelfixer [3.12 h]; Mason [3.12 h]; Single Catch basin [0.4] | 1,798.7 | 1,798.7 | 0.00197281439564727 | Cons. | Z3 | Storm | Cons | CS.UNSC | CBs | SUB.C | Cust. Rd 06 | Strm |
| B6.33 05 40.01.510_R |  | Catch Basin Installation(Rem) | 3d | 2026-09-26 A | 2026-10-14 A | B6.33 05 40.01.500_R SS, B6.33 05 40.01.510 | 100% | 2026-09-16 | 2026-09-19 |  | Labor [9.36 h]; Foreman [4.68 h]; Carpenter [4.68 h]; Steelfixer [4.68 h]; Mason [4.68 h]; Operator [9.36 h]; Surveyor [4.68 h]; Surveyor Helper [4.68 h]; Boom Truck [4.8 h]; Single Catch basin [1.79] | 8,076.53 | 8,076.53 | 0.00885832346280832 | Cons. | Z3 | Storm | Cons | CS.UNSC | CBs | SUB.C | Cust. Rd 06 | Strm |
| B6.33 05 40.01.520_R |  | Backfilling, DI Frame & Grate Cover Fixing(Rem) | 2d | 2026-10-01 A | 2026-10-15 A | B6.33 42 11.36-197, B6.33 05 40.01.520 | 100% | 2026-09-16 | 2026-09-17 |  | Labor [15.59 h]; Foreman [7.8 h]; Operator [15.59 h]; Surveyor [7.8 h]; Surveyor Helper [7.8 h]; Loader [8 h]; Water Tanker [8 h]; Dump Truck [8 h]; Plate Compactor [8 h]; Single Catch basin [1.19] | 5,384.35 | 5,384.35 | 0.00590554897520555 | Cons. | Z3 | Storm | Cons | CS.UNSC | CBs | SUB.C | Cust. Rd 06 | Strm |
|  | Dou | **Double** |  | 2026-09-09 | 2026-10-18 |  |  |  |  |  |  |  |  |  |  |  |  |  |  |  |  |  |  |
| B6.33 05 40.01.930 |  | Excavation, Compaction & Vapour Barrier (44.00% Completed) | 5.6d | 2026-09-09 A | 2026-09-15 A | B6.33 05 40.01.490 SS | 100% |  |  |  | Labor [13.72 h]; Foreman [6.86 h]; Operator [13.72 h]; Surveyor [6.86 h]; Surveyor Helper [6.86 h]; Excavator (With Bucket) [7.04 h]; Water Tanker [7.04 h]; Dump Truck [7.04 h]; Roller Compactor [7.04 h]; Double Catch basin [0.26] | 2,313.54 | 2,313.54 | 0.000879450288447266 | Cons. | Z3 | Storm | Cons | CS.UNSC | CBs | SUB.C | Cust. Rd 06 | Strm |
| B6.33 05 40.01.940 |  | Blinding Conc. (44.00% Completed) | 3.6d | 2026-09-12 A | 2026-09-15 A | B6.33 05 40.01.930 SS | 100% |  |  |  | Labor [13.72 h]; Foreman [6.86 h]; Laboratory Officer [6.86 h]; Carpenter [6.86 h]; Steelfixer [6.86 h]; Mason [6.86 h]; Double Catch basin [0.17] | 1,520.32 | 1,520.32 | 0.000577924475265344 | Cons. | Z3 | Storm | Cons | CS.UNSC | CBs | SUB.C | Cust. Rd 06 | Strm |
| B6.33 05 40.01.950 |  | Catch Basin Installation (44.00% Completed) | 1.6d | 2026-09-14 A | 2026-09-15 A | B6.33 05 40.01.940 SS | 100% |  |  |  | Labor [20.58 h]; Foreman [10.29 h]; Carpenter [10.29 h]; Steelfixer [10.29 h]; Mason [10.29 h]; Operator [20.58 h]; Surveyor [10.29 h]; Surveyor Helper [10.29 h]; Boom Truck [10.56 h]; Double Catch basin [0.8] | 7,072.83 | 7,072.83 | 0.00268861205772004 | Cons. | Z3 | Storm | Cons | CS.UNSC | CBs | SUB.C | Cust. Rd 06 | Strm |
| B6.33 05 40.01.930_R |  | Excavation, Compaction & Vapour Barrier(Rem) | 2.12d | 2026-09-19 A | 2026-10-07 A | B6.33 05 40.01.490_R SS, B6.33 05 40.01.930 | 100% | 2026-09-16 | 2026-09-19 |  | Labor [17.46 h]; Foreman [8.73 h]; Operator [17.46 h]; Surveyor [8.73 h]; Surveyor Helper [8.73 h]; Excavator (With Bucket) [8.96 h]; Water Tanker [8.96 h]; Dump Truck [8.96 h]; Roller Compactor [8.96 h]; Double Catch basin [0.33] | 2,944.5 | 2,944.5 | 0.000879450288447266 | Cons. | Z3 | Storm | Cons | CS.UNSC | CBs | SUB.C | Cust. Rd 06 | Strm |
| B6.33 05 40.01.940_R |  | Blinding Conc.(Rem) | 2.12d | 2026-09-22 A | 2026-10-12 A | B6.33 05 40.01.930_R SS, B6.33 05 40.01.940 | 100% | 2026-09-16 | 2026-09-19 |  | Labor [17.46 h]; Foreman [8.73 h]; Laboratory Officer [8.73 h]; Carpenter [8.73 h]; Steelfixer [8.73 h]; Mason [8.73 h]; Double Catch basin [0.22] | 1,934.96 | 1,934.96 | 0.000577924475265344 | Cons. | Z3 | Storm | Cons | CS.UNSC | CBs | SUB.C | Cust. Rd 06 | Strm |
| B6.33 05 40.01.950_R |  | Catch Basin Installation(Rem) | 2.68d | 2026-09-27 A | 2026-10-15 A | B6.33 05 40.01.940_R SS, B6.33 05 40.01.950 | 100% | 2026-09-16 | 2026-09-19 |  | Labor [26.2 h]; Foreman [13.1 h]; Carpenter [13.1 h]; Steelfixer [13.1 h]; Mason [13.1 h]; Operator [26.2 h]; Surveyor [13.1 h]; Surveyor Helper [13.1 h]; Boom Truck [13.44 h]; Double Catch basin [1.02] | 9,001.78 | 9,001.78 | 0.00268861205772004 | Cons. | Z3 | Storm | Cons | CS.UNSC | CBs | SUB.C | Cust. Rd 06 | Strm |
| B6.33 05 40.01.960 |  | Backfilling, DI Frame & Grate Cover Fixing | 6d | 2026-09-30 A | 2026-10-18 A | B6.33 42 11.35-124, B6.33 42 11.36-197 | 100% | 2026-09-16 | 2026-09-22 |  | Labor [77.96 h]; Foreman [38.98 h]; Operator [77.96 h]; Surveyor [38.98 h]; Surveyor Helper [38.98 h]; Loader [40 h]; Water Tanker [40 h]; Dump Truck [40 h]; Plate Compactor [40 h]; Double Catch basin [1.19] | 10,516.1 | 10,516.1 | 0.00175890508448974 | Cons. | Z3 | Storm | Cons | CS.UNSC | CBs | SUB.C | Cust. Rd 06 | Strm |

| ID | WBS | Activity | Duration | Start | Finish | Predecessors | Complete | Remaining | Planned start | Planned finish | Total float | Free float | Resources | Cost | Actual cost | Weight % | DMM2 Weekly Progress | DMM2 Zones | Networks & Stations | DMM2 Phases | UNASCO | Networks Components | Subcontractors works | Dmm2 Roads | Yellow Sheet | All Electrical Scope |
| --- | --- | --- | --- | --- | --- | --- | --- | --- | --- | --- | --- | --- | --- | --- | --- | --- | --- | --- | --- | --- | --- | --- | --- | --- | --- | --- |
|  | UPVC | **UPVC** |  | 2026-03-09 | 2026-09-30 |  |  |  |  |  |  |  |  |  |  |  |  |  |  |  |  |  |  |  |  |  |
|  | UPVC300 | **?300 From 0.0 to 1.5m** |  | 2026-03-09 | 2026-06-08 |  |  |  |  |  |  |  |  |  |  |  |  |  |  |  |  |  |  |  |  |  |
| B6.33 42 11.35-124 |  | Fittings & Pipe Installation | 4.5d | 2026-03-09 A | 2026-03-16 A | B6.33 42 11.35-112, B6.33 05 39.01.3677 | 100% |  |  |  |  |  | Labor [28.35 h]; Foreman [14.17 h]; Plumber Helper [14.17 h]; Plumber [14.17 h]; Surveyor [14.17 h]; Surveyor Helper [14.17 h]; less than 1.5 [186.46] | 112,143.85 | 112,143.85 | 0.0603343421083148 | Cons. | Z3 | Storm | Cons | CS.UNSC | UPVC | SUB.C | Cust. Rd 06 | Strm |  |
| B6.33 42 11.35-112 |  | Catch Basin Opening Prep. | 2d | 2026-06-07 A | 2026-06-08 A | B6.33 05 39.01.3677 | 100% |  |  |  |  |  | Labor [28.35 h]; Foreman [14.17 h]; Plumber Helper [14.17 h]; Plumber [14.17 h]; less than 1.5 [46.62] | 28,035.96 | 28,035.96 | 0.0150835855285905 | Cons. | Z3 | Storm | Cons | CS.UNSC | UPVC | SUB.C | Cust. Rd 06 | Strm |  |
|  | UPVC3001 | **?400 From 0.0 to 1.5m** |  | 2026-03-09 | 2026-09-30 |  |  |  |  |  |  |  |  |  |  |  |  |  |  |  |  |  |  |  |  |  |
| B6.33 42 11.36-197 |  | Fittings & Pipe Installation | 4.5d | 2026-03-09 A | 2026-03-16 A | B6.33 05 39.01.3677 | 100% |  |  |  |  |  | Labor [28.35 h]; Foreman [14.17 h]; Plumber Helper [14.17 h]; Plumber [14.17 h]; Surveyor [14.17 h]; Surveyor Helper [14.17 h]; less than 1.5 [186.46] | 112,143.85 | 112,143.85 | 0.0603343421083148 | Cons. | Z3 | Storm | Cons | CS.UNSC | UPVC | SUB.C | Cust. Rd 06 | Strm |  |
| B6.33 42 11.36-185 |  | Catch Basin Opening Prep. (60.78% Completed) | 12d | 2026-09-02 A | 2026-09-15 A | B6.33 42 11.35-112 | 100% |  |  |  |  |  | Labor [18.95 h]; Foreman [9.48 h]; Plumber Helper [9.48 h]; Plumber [9.48 h]; less than 1.5 [28.33] | 17,040.93 | 17,040.93 | 0.0150835855285905 | Cons. | Z3 | Storm | Cons | CS.UNSC | UPVC | SUB.C | Cust. Rd 06 | Strm |  |
| B6.33 42 11.36-185_R |  | Catch Basin Opening Prep.(Rem) | 3d | 2026-09-28 A | 2026-09-30 A | B6.33 42 11.35-112, B6.33 42 11.36-185, B6.33 42 11.36-183_R | 100% |  |  |  |  |  | Labor [12.23 h]; Foreman [6.11 h]; Plumber Helper [6.11 h]; Plumber [6.11 h]; less than 1.5 [18.28] | 10,995.03 | 10,995.03 | 0.0150835855285905 | Cons. | Z3 | Storm | Cons | CS.UNSC | UPVC | SUB.C | Cust. Rd 06 | Strm |  |
|  | Dry Networks | **Dry Networks** |  | 2026-10-13 | 2026-12-23 |  |  |  |  |  |  |  |  |  |  |  |  |  |  |  |  |  |  |  |  |  |
|  | MV Network | **Medium Voltage Network** |  | 2026-10-13 | 2026-12-08 |  |  |  |  |  |  |  |  |  |  |  |  |  |  |  |  |  |  |  |  |  |
|  | Cables | **Cables** |  | 2026-10-13 | 2026-12-05 |  |  |  |  |  |  |  |  |  |  |  |  |  |  |  |  |  |  |  |  |  |
|  | 3C,500mm2 | **3C,500mm2** |  | 2026-10-17 | 2026-11-21 |  |  |  |  |  |  |  |  |  |  |  |  |  |  |  |  |  |  |  |  |  |
| B2.33 71 49.23.92 |  | Cable 13.8 kV Unarmored | 4d | 2026-10-17 A | 2026-10-22 | B2.33 71 49.23.77, B6.33 05 40.01.960, B6.33 05 40.01.520_R | 67% | 1.32d | 2026-10-17 | 2026-10-21 | 98d | 0d | Labor [46.78 h]; Foreman [23.39 h]; Operator [46.78 h]; Boom Truck [24 h]; Electrician [23.39 h]; Cable 13.8 kV 3Cx 500 mm² Al XLPE,/LLDPE / Unarmored [681.95] | 234,112.92 | 156,855.66 | 0.0447374191430308 | Cons. | Z3 | MV | Cons |  | Cbl&Dct | SUB.C | Cust. Rd 06 | MV | allElec |
| B2.33 71 49.23.93 |  | Straight joints cables | 3d | 2026-10-22 | 2026-10-26 | B2.33 71 49.23.92 |  |  |  |  | 98d | 19.68d | Labor [31.18 h]; Foreman [15.59 h]; Electrician [15.59 h]; Straight joints cables for 13.8 kv 3Cx 500 mm², Al /XLPE/LLDPE [2] | 7,880.95 |  | 0.00396214380929156 | Cons. | Z3 | MV | Cons |  | Cbl&Dct | SUB.C | Cust. Rd 06 | MV | allElec |
| B2.33 71 49.23.94 |  | Cable Termination | 3d | 2026-11-18 | 2026-11-21 | B2.33 71 49.23.93, B2.33 71 49.23.88 |  |  |  |  | 78.32d | 1d | Labor [31.18 h]; Foreman [15.59 h]; Electrician [15.59 h]; Cable Termination for 13.8 kv 3Cx 500 mm², Al /XLPE/LLDPE [0.91] | 3,058.5 |  | 0.00153766139892947 | Cons. | Z3 | MV | Cons |  | Cbl&Dct | SUB.C | Cust. Rd 06 | MV | allElec |
|  | 3C,50mm2 | **3C,50mm2** |  | 2026-10-13 | 2026-12-05 |  |  |  |  |  |  |  |  |  |  |  |  |  |  |  |  |  |  |  |  |  |
| B2.33 71 49.23.95 |  | Cable 13.8 kV Unarmored | 4d | 2026-10-13 A | 2026-10-22 | B2.33 71 49.23.92 | 67% | 1.32d | 2026-10-21 | 2026-10-26 | 18d | 0d | Labor [46.78 h]; Foreman [23.39 h]; Operator [46.78 h]; Boom Truck [24 h]; Electrician [23.39 h]; Copper Cable 13.8 kV 3Cx 50 mm² CU/XLPE/STA/PVC [25] | 4,960.7 | 3,402.05 | 0.000947718667221691 | Cons. | Z3 | MV | Cons |  | Cbl&Dct | SUB.C | Cust. Rd 06 | MV | allElec |
| B2.33 71 49.23.96 |  | Straight joints cables | 3d | 2026-10-22 | 2026-10-26 | B2.33 71 49.23.95 |  |  |  |  | 100d | 31.68d | Labor [31.18 h]; Foreman [15.59 h]; Electrician [15.59 h]; Straight joints cables for 13.8 kv 3Cx 500 mm², Al /XLPE/LLDPE [2] | 7,880.95 |  | 0.00396214380929156 | Cons. | Z3 | MV | Cons |  | Cbl&Dct | SUB.C | Cust. Rd 06 | MV | allElec |
| B2.33 71 49.23.97 |  | Cable Termination | 3d | 2026-12-02 | 2026-12-05 | B2.33 71 49.23.96, B2.33 71 49.23.73 |  |  |  |  | 68.32d | 0d | Labor [31.18 h]; Foreman [15.59 h]; Electrician [15.59 h]; Cable Termination for 13.8 kv 3Cx 500 mm², Al /XLPE/LLDPE [0.91] | 3,058.5 |  | 0.00153766139892947 | Cons. | Z3 | MV | Cons |  | Cbl&Dct | SUB.C | Cust. Rd 06 | MV | allElec |
|  | RMU | **RMU** |  | 2026-10-22 | 2026-12-08 |  |  |  |  |  |  |  |  |  |  |  |  |  |  |  |  |  |  |  |  |  |
| B2 33 73 00.02.5 |  | Land Adjustment | 3d | 2026-10-22 | 2026-10-26 | B2.33 71 49.23.95 |  |  |  |  | 45d | 0d | Labor [31.18 h]; Foreman [15.59 h]; Operator [31.18 h]; Surveyor [7.8 h]; Surveyor Helper [7.8 h]; Excavator (With Bucket) [16 h]; Water Tanker [16 h]; Dump Truck [16 h]; Roller Compactor [16 h]; RMU, 13.8KV [0.16] | 8,183.22 |  | 0.00156311216657044 | Cons. | Z3 | MV | Cons |  |  | SUB.C | Cust. Rd 06 | MV |  |
| B2 33 73 00.02.7 |  | Foundation Works & Curing | 4d | 2026-10-26 | 2026-10-31 | B2 33 73 00.02.5 |  |  |  |  | 90d | 0d | Labor [46.78 h]; Foreman [23.39 h]; Laboratory Officer [23.39 h]; Carpenter [23.39 h]; Steelfixer [23.39 h]; Mason [23.39 h]; RMU, 13.8KV [0.16] | 8,183.22 |  | 0.00156311216657044 | Cons. | Z3 | MV | Cons |  |  | SUB.C | Cust. Rd 06 | MV |  |
| B2 33 73 00.02.9 |  | Installation of Ring Main Unit RMU, 13.8KV | 3d | 2026-10-31 | 2026-11-03 | B2 33 73 00.02.7 |  |  |  |  | 91d | 1d | Labor [31.18 h]; Operator [31.18 h]; Boom Truck [16 h]; Electrician [15.59 h]; RMU, 13.8KV [0.34] | 17,110.37 |  | 0.0032683254391927 | Cons. | Z3 | MV | Cons |  |  | SUB.C | Cust. Rd 06 | MV |  |
| B2.33 71 49.23.102 |  | Normally Open Point 13.8 KV | 3d | 2026-12-06 | 2026-12-08 | B2 33 73 00.02.9, B2.33 71 49.23.97, B2.33 71 49.23.05 |  |  |  |  | 68.32d | 5.41d | Labor [31.18 h]; Electrician [15.59 h]; Normally Open Point 13.8 KV Outdoor type [1] | 40,795.49 |  | 0.0205099198896543 | Cons. | Z3 | MV | Cons |  |  | SUB.C | Cust. Rd 06 | MV |  |

| ID | WBS | Activity | Duration | Start | Finish | Predecessors | Total float | Free float | Resources | Cost | Weight % | DMM2 Weekly Progress | DMM2 Zones | Networks & Stations | DMM2 Phases | Subcontractors works | Dmm2 Roads | Yellow Sheet | Networks Components | All Electrical Scope |
| --- | --- | --- | --- | --- | --- | --- | --- | --- | --- | --- | --- | --- | --- | --- | --- | --- | --- | --- | --- | --- |
|  | Units Substation | **Units Substation** |  | 2026-10-26 | 2026-11-08 |  |  |  |  |  |  |  |  |  |  |  |  |  |  |  |
| B2 33 73 00.01.5 |  | Land Adjustment | 3d | 2026-10-26 | 2026-10-29 | B2 33 73 00.02.5 | 45d | 0d | Labor [31.18 h]; Foreman [15.59 h]; Operator [31.18 h]; Surveyor [7.8 h]; Surveyor Helper [7.8 h]; Excavator (With Bucket) [16 h]; Water Tanker [16 h]; Dump Truck [16 h]; Roller Compactor [16 h]; Unit Substation 13.8/0.4 K V, 500kVA [0.17] | 19,047.71 | 0.00325611262400754 | Cons. | Z3 | MV | Cons | SUB.C | Cust. Rd 06 | MV |  |  |
| B2 33 73 00.01.7 |  | Foundation Works & Curing | 4d | 2026-10-31 | 2026-11-04 | B2 33 73 00.01.5, B2 33 73 00.02.7 | 90d | 0d | Labor [46.78 h]; Foreman [23.39 h]; Laboratory Officer [23.39 h]; Carpenter [23.39 h]; Steelfixer [23.39 h]; Mason [23.39 h]; Unit Substation 13.8/0.4 K V, 500kVA [0.17] | 19,047.71 | 0.00325611262400754 | Cons. | Z3 | MV | Cons | SUB.C | Cust. Rd 06 | MV |  |  |
| B2 33 73 00.01.9 |  | Installation of Unit Substation 13.8/0.4 K V | 3d | 2026-11-04 | 2026-11-08 | B2 33 73 00.01.7, B2 33 73 00.02.9 | 90d | 12.68d | Labor [31.18 h]; Operator [31.18 h]; Boom Truck [16 h]; Electrician [15.59 h]; Unit Substation 13.8/0.4 K V, 500kVA [0.33] | 38,095.41 | 0.00651222524801507 | Cons. | Z3 | MV | Cons | SUB.C | Cust. Rd 06 | MV |  |  |
|  | LV Network | **Low Voltage Network** |  | 2026-10-21 | 2026-12-15 |  |  |  |  |  |  |  |  |  |  |  |  |  |  |  |
|  | Duct Banks | **Duct Banks** |  | 2026-10-21 | 2026-12-15 |  |  |  |  |  |  |  |  |  |  |  |  |  |  |  |
|  | 2 Way | **2 Way** |  | 2026-10-21 | 2026-12-15 |  |  |  |  |  |  |  |  |  |  |  |  |  |  |  |
| B2.33 71 00 02 142 |  | Excavation | 2d | 2026-10-21 | 2026-10-22 | B6.33 05 40.01.520_R, B6.33 05 40.01.960 | 17.48d | 0d | Labor [31.18 h]; Foreman [15.59 h]; Operator [31.18 h]; Surveyor [15.59 h]; Surveyor Helper [15.59 h]; Excavator (With Bucket) [16 h]; Water Tanker [16 h]; Dump Truck [16 h]; Plate Compactor [16 h]; Excavation for Trench size 40cm wide and 65cm deep (for 1 cable); Duct bank for LV cables UPVC (2xDia. 110mm) [10]; SL LV Excavation for Trench size 40cm wide and 65cm deep (for 1 cable) | 2,755.67 | 0.00112258975602026 | Cons. | Z3 | LV | Cons | SUB.C | Cust. Rd 06 | LV | Cbl&Dct | allElec |
| B2.33 71 00 02 143 |  | Shuttering, Steel Fixing Incl. UPVC Pipe & Conc. Cast | 3d | 2026-10-24 | 2026-10-26 | B2.33 71 00 02 142 | 102.32d | 40d | Labor [93.55 h]; Laboratory Officer [46.78 h]; Carpenter [46.78 h]; Steelfixer [46.78 h]; Mason [46.78 h]; Surveyor [46.78 h]; Surveyor Helper [46.78 h]; Excavation for Trench size 40cm wide and 65cm deep (for 1 cable); Duct bank for LV cables UPVC (2xDia. 110mm) [30]; SL LV Excavation for Trench size 40cm wide and 65cm deep (for 1 cable) | 8,270.78 | 0.00336904054414932 | Cons. | Z3 | LV | Cons | SUB.C | Cust. Rd 06 | LV | Cbl&Dct | allElec |
| B2.33 71 00 02 144 |  | Backfilling & Warrning Tape | 3d | 2026-12-13 | 2026-12-15 | B2.33 71 00 02 143, B2.33 71 00 02 111, B2.33 71 00 02 108 SS, B2.33 71 00 02 102 | 62.32d | 0d | Labor [77.96 h]; Foreman [38.98 h]; Operator [155.92 h]; Surveyor [38.98 h]; Surveyor Helper [38.98 h]; Loader [40 h]; Water Tanker [40 h]; Dump Truck [40 h]; Plate Compactor [40 h]; Roller Compactor [40 h]; Excavation for Trench size 40cm wide and 65cm deep (for 1 cable); Duct bank for LV cables UPVC (2xDia. 110mm) [10]; SL LV Excavation for Trench size 40cm wide and 65cm deep (for 1 cable) | 2,755.67 | 0.00112258975602026 | Cons. | Z3 | LV | Cons | SUB.C | Cust. Rd 06 | LV | Cbl&Dct | allElec |
|  | 6 Way | **6 Way** |  | 2026-10-24 | 2026-11-01 |  |  |  |  |  |  |  |  |  |  |  |  |  |  |  |
| B2.33 71 00 02 130 |  | Excavation | 2d | 2026-10-24 | 2026-10-25 | B2.33 71 00 02 142 | 17.48d | 0d | Labor [31.18 h]; Foreman [15.59 h]; Operator [31.18 h]; Surveyor [15.59 h]; Surveyor Helper [15.59 h]; Excavator (With Bucket) [16 h]; Water Tanker [16 h]; Dump Truck [16 h]; Plate Compactor [16 h]; Excavation for Trench size 90cm wide and 65cm deep ( for 3 cables); Duct bank for LV cables UPVC (6xDia. 110mm) [5]; SL LV Excavation for Trench size 90cm wide and 65cm deep ( for 3 cables) | 2,844.71 | 0.00162137899963146 | Cons. | Z3 | LV | Cons | SUB.C | Cust. Rd 06 | LV | Cbl&Dct | allElec |
| B2.33 71 00 02 131 |  | Shuttering, Steel Fixing Incl. UPVC Pipe & Conc. Cast | 3d | 2026-10-26 | 2026-10-28 | B2.33 71 00 02 130 | 100.32d | 0d | Labor [93.55 h]; Laboratory Officer [46.78 h]; Carpenter [46.78 h]; Steelfixer [46.78 h]; Mason [46.78 h]; Surveyor [46.78 h]; Surveyor Helper [46.78 h]; Excavation for Trench size 90cm wide and 65cm deep ( for 3 cables); Duct bank for LV cables UPVC (6xDia. 110mm) [15]; SL LV Excavation for Trench size 90cm wide and 65cm deep ( for 3 cables) | 8,534.12 | 0.00486436653485481 | Cons. | Z3 | LV | Cons | SUB.C | Cust. Rd 06 | LV | Cbl&Dct | allElec |
| B2.33 71 00 02 132 |  | Backfilling & Warrning Tape | 3d | 2026-10-29 | 2026-11-01 | B2.33 71 00 02 131 | 100.32d | 38d | Labor [77.96 h]; Foreman [38.98 h]; Operator [155.92 h]; Surveyor [38.98 h]; Surveyor Helper [38.98 h]; Loader [40 h]; Water Tanker [40 h]; Dump Truck [40 h]; Plate Compactor [40 h]; Roller Compactor [40 h]; Excavation for Trench size 90cm wide and 65cm deep ( for 3 cables); Duct bank for LV cables UPVC (6xDia. 110mm) [5]; SL LV Excavation for Trench size 90cm wide and 65cm deep ( for 3 cables) | 2,844.71 | 0.00162160853559189 | Cons. | Z3 | LV | Cons | SUB.C | Cust. Rd 06 | LV | Cbl&Dct | allElec |
|  | 8 Way | **8 Way** |  | 2026-10-26 | 2026-11-03 |  |  |  |  |  |  |  |  |  |  |  |  |  |  |  |
| B2.33 71 00 02 133 |  | Excavation | 2d | 2026-10-26 | 2026-10-27 | B2.33 71 00 02 130 | 17.48d | 0d | Labor [31.18 h]; Foreman [15.59 h]; Operator [31.18 h]; Surveyor [15.59 h]; Surveyor Helper [15.59 h]; Excavator (With Bucket) [16 h]; Water Tanker [16 h]; Dump Truck [16 h]; Plate Compactor [16 h]; Excavation for Trench size 120cm wide and 65cm deep ( for 4 cables); Duct bank for LV cables UPVC (8xDia. 110mm) [3.67]; SL LV Excavation for Trench size 120cm wide and 65cm deep ( for 4 cables) | 2,680.93 | 0.00142427063447639 | Cons. | Z3 | LV | Cons | SUB.C | Cust. Rd 06 | LV | Cbl&Dct | allElec |
| B2.33 71 00 02 134 |  | Shuttering, Steel Fixing Incl. UPVC Pipe & Conc. Cast | 3d | 2026-10-28 | 2026-10-31 | B2.33 71 00 02 133 | 98.32d | 0d | Labor [93.55 h]; Laboratory Officer [46.78 h]; Carpenter [46.78 h]; Steelfixer [46.78 h]; Mason [46.78 h]; Surveyor [46.78 h]; Surveyor Helper [46.78 h]; Excavation for Trench size 120cm wide and 65cm deep ( for 4 cables); Duct bank for LV cables UPVC (8xDia. 110mm) [11]; SL LV Excavation for Trench size 120cm wide and 65cm deep ( for 4 cables) | 8,035.48 | 0.00426936886402274 | Cons. | Z3 | LV | Cons | SUB.C | Cust. Rd 06 | LV | Cbl&Dct | allElec |
| B2.33 71 00 02 135 |  | Backfilling & Warrning Tape | 3d | 2026-11-01 | 2026-11-03 | B2.33 71 00 02 134 | 98.32d | 36d | Labor [77.96 h]; Foreman [38.98 h]; Operator [155.92 h]; Surveyor [38.98 h]; Surveyor Helper [38.98 h]; Loader [40 h]; Water Tanker [40 h]; Dump Truck [40 h]; Plate Compactor [40 h]; Roller Compactor [40 h]; Excavation for Trench size 120cm wide and 65cm deep ( for 4 cables); Duct bank for LV cables UPVC (8xDia. 110mm) [3.67]; SL LV Excavation for Trench size 120cm wide and 65cm deep ( for 4 cables) | 2,680.93 | 0.00142450017043682 | Cons. | Z3 | LV | Cons | SUB.C | Cust. Rd 06 | LV | Cbl&Dct | allElec |
|  | Cables | **Cables** |  | 2026-10-22 | 2026-10-27 |  |  |  |  |  |  |  |  |  |  |  |  |  |  |  |
|  | 4C,10+1C,10mm2 | **4C,10+1C,10mm2** |  | 2026-10-22 | 2026-10-25 |  |  |  |  |  |  |  |  |  |  |  |  |  |  |  |
| B2.33 71 00 01 17 |  | Cable Pulling | 2d | 2026-10-22 | 2026-10-25 | B2.33 71 49.23.95 | 18d | 0d | Labor [62.37 h]; Foreman [31.18 h]; Surveyor [31.18 h]; Surveyor Helper [31.18 h]; Electrician [31.18 h]; Cable, Copper 4x10mm2/ CU/XLPE/SWA/PVC + 1x10mm2 CU/PVC [1535.55] | 95,723.28 | 0.0182956258973869 | Cons. | Z3 | LV | Cons | SUB.C | Cust. Rd 06 | LV | Cbl&Dct | allElec |
|  | 4C,50+1C,25mm2 | **4C,50+1C,25mm2** |  | 2026-10-25 | 2026-10-27 |  |  |  |  |  |  |  |  |  |  |  |  |  |  |  |
| B2.33 71 00 01 18 |  | Cable Pulling | 2d | 2026-10-25 | 2026-10-27 | B2.33 71 00 01 17 | 18d | 0d | Labor [62.37 h]; Foreman [31.18 h]; Surveyor [31.18 h]; Surveyor Helper [31.18 h]; Electrician [31.18 h]; Cable, Copper 4x50mm2/ CU/XLPE/PVC +1x25mm2 CU/PVC [137.49] | 25,833.3 | 0.00493828300375468 | Cons. | Z3 | LV | Cons | SUB.C | Cust. Rd 06 | LV | Cbl&Dct | allElec |
|  | LV Panels | **0.6/1 KV Low Voltage Distribution Panels** |  | 2026-10-29 | 2026-11-21 |  |  |  |  |  |  |  |  |  |  |  |  |  |  |  |
| B2.33 71 26 021 |  | Land Adjustment | 2d | 2026-10-29 | 2026-11-01 | B2 33 73 00.01.5 | 45d | 0d | Labor [31.18 h]; Foreman [15.59 h]; Operator [31.18 h]; Surveyor [7.8 h]; Surveyor Helper [7.8 h]; Excavator (With Bucket) [16 h]; Water Tanker [16 h]; Dump Truck [16 h]; Roller Compactor [16 h]; Unit Substation 13.8/0.4 K V, 500kVA [0.17] | 19,047.71 | 0.00325611262400754 | Cons. | Z3 | LV | Cons | SUB.C | Cust. Rd 06 | LV | Cbl&Dct | allElec |
| B2.33 71 26 022 |  | Foundation Works & Curing | 3d | 2026-11-16 | 2026-11-18 | B2.33 71 26 021, B2.33 71 26 012, B2.33 71 26 25 | 37.32d | 0d | Labor [62.37 h]; Foreman [31.18 h]; Laboratory Officer [31.18 h]; Carpenter [31.18 h]; Steelfixer [31.18 h]; Mason [31.18 h]; Unit Substation 13.8/0.4 K V, 500kVA [0.17] | 19,047.71 | 0.00325611262400754 | Cons. | Z3 | LV | Cons | SUB.C | Cust. Rd 06 | LV | Cbl&Dct | allElec |
| B2.33 71 26 023 |  | Installation of 0.6/1 KV Low Voltage Distribution Panels | 2d | 2026-11-19 | 2026-11-21 | B2.33 71 26 022, B2.33 71 26 013, B2.33 71 00 01 20 | 37.32d | 24d | Labor [31.18 h]; Operator [31.18 h]; Boom Truck [16 h]; Electrician [15.59 h]; 0.6/1 KV Low Voltage Distribution Panels for Industrial UPS - Cameras [1] | 8,223.7 | 0.00157203882286756 | Cons. | Z3 | LV | Cons | SUB.C | Cust. Rd 06 | LV | Cbl&Dct | allElec |

| ID | WBS | Activity | Duration | Start | Finish | Predecessors | Total float | Free float | Resources | Cost | Weight % | DMM2 Weekly Progress | DMM2 Zones | Networks & Stations | DMM2 Phases | Networks Components | All Electrical Scope | Subcontractors works | Dmm2 Roads | Yellow Sheet |
| --- | --- | --- | --- | --- | --- | --- | --- | --- | --- | --- | --- | --- | --- | --- | --- | --- | --- | --- | --- | --- |
|  | LV Pillars | **0.6/1 KV Low Voltage Distribution Pillars** |  | 2026-11-01 | 2026-11-09 |  |  |  |  |  |  |  |  |  |  |  |  |  |  |  |
| B2.33 71 26 011 |  | Land Adjustment | 2d | 2026-11-01 | 2026-11-03 | B2.33 71 26 021 | 45d | 0d | Labor [31.18 h]; Foreman [15.59 h]; Operator [31.18 h]; Surveyor [7.8 h]; Surveyor Helper [7.8 h]; Excavator (With Bucket) [16 h]; Water Tanker [16 h]; Dump Truck [16 h]; Roller Compactor [16 h]; RMU, 13.8KV [0.16] | 8,183.22 | 0.00156311216657044 | Cons. | Z3 | LV | Cons | Cbl&Dct | allElec | SUB.C | Cust. Rd 06 | LV |
| B2.33 71 26 012 |  | Foundation Works & Curing | 3d | 2026-11-03 | 2026-11-07 | B2.33 71 26 011 | 45d | 0d | Labor [62.37 h]; Foreman [31.18 h]; Laboratory Officer [31.18 h]; Carpenter [31.18 h]; Steelfixer [31.18 h]; Mason [31.18 h]; RMU, 13.8KV [0.16] | 8,183.22 | 0.00156311216657044 | Cons. | Z3 | LV | Cons | Cbl&Dct | allElec | SUB.C | Cust. Rd 06 | LV |
| B2.33 71 26 013 |  | Installation of 0.6/1 KV Low Voltage Distribution Pillars | 2d | 2026-11-07 | 2026-11-09 | B2.33 71 26 012, B2.33 71 00 01 20 | 46d | 8.68d | Labor [31.18 h]; Operator [31.18 h]; Boom Truck [16 h]; Electrician [15.59 h]; 0.6/1 KV Low Voltage Distribution Pillars with 5 Outgoing feeders rated 200 Ampers Fuse type [2.33] | 30,404.52 | 0.00249090658552958 | Cons. | Z3 | LV | Cons | Cbl&Dct | allElec | SUB.C | Cust. Rd 06 | LV |
|  | Street Lighting | **Street Lighting** |  | 2026-10-27 | 2026-12-23 |  |  |  |  |  |  |  |  |  |  |  |  |  |  |  |
|  | Duct Banks | **Duct Banks** |  | 2026-10-28 | 2026-11-05 |  |  |  |  |  |  |  |  |  |  |  |  |  |  |  |
|  | 4 Way | **4 Way** |  | 2026-10-28 | 2026-11-05 |  |  |  |  |  |  |  |  |  |  |  |  |  |  |  |
| B2.33 71 00 02 154 |  | Excavation | 2d | 2026-10-28 | 2026-10-29 | B2.33 71 00 02 133, B6.33 05 40.01.960, B6.33 05 40.01.520_R | 17.48d | 0d | Labor [31.18 h]; Foreman [15.59 h]; Operator [31.18 h]; Surveyor [15.59 h]; Surveyor Helper [15.59 h]; Excavator (With Bucket) [16 h]; Water Tanker [16 h]; Dump Truck [16 h]; Plate Compactor [16 h]; SL Excavation for Trench size 60cm wide and 65cm deep ( for 2 cables); Road Crossing Duct for Street Lighting cables UPVC (4xDia. 110mm) [8.92] | 3,759.25 | 0.00153753780264308 | Cons. | Z3 | SL | Cons | Cables | allElec | SUB.C | Cust. Rd 06 | SL |
| B2.33 71 00 02 155 |  | Shuttering, Steel Fixing Incl. UPVC Pipe & Conc. Cast | 3d | 2026-10-31 | 2026-11-02 | B2.33 71 00 02 154 | 89.32d | 0d | Labor [93.55 h]; Laboratory Officer [46.78 h]; Carpenter [46.78 h]; Steelfixer [46.78 h]; Mason [46.78 h]; Surveyor [46.78 h]; Surveyor Helper [46.78 h]; SL Excavation for Trench size 60cm wide and 65cm deep ( for 2 cables); Road Crossing Duct for Street Lighting cables UPVC (4xDia. 110mm) [26.76] | 11,277.76 | 0.00461261340792926 | Cons. | Z3 | SL | Cons | Cables | allElec | SUB.C | Cust. Rd 06 | SL |
| B2.33 71 00 02 156 |  | Backfilling & Warrning Tape | 3d | 2026-11-03 | 2026-11-05 | B2.33 71 00 02 155 | 89.32d | 13.5d | Labor [77.96 h]; Foreman [38.98 h]; Operator [155.92 h]; Surveyor [38.98 h]; Surveyor Helper [38.98 h]; Loader [40 h]; Water Tanker [40 h]; Dump Truck [40 h]; Plate Compactor [40 h]; Roller Compactor [40 h]; SL Excavation for Trench size 60cm wide and 65cm deep ( for 2 cables); Road Crossing Duct for Street Lighting cables UPVC (4xDia. 110mm) [8.92] | 3,759.25 | 0.00153753780264308 | Cons. | Z3 | SL | Cons | Cables | allElec | SUB.C | Cust. Rd 06 | SL |
|  | Drawpits | **Drawpits** |  | 2026-10-31 | 2026-11-25 |  |  |  |  |  |  |  |  |  |  |  |  |  |  |  |
| B2.33 71 00 02 157 |  | Excavation | 2d | 2026-10-31 | 2026-11-01 | B2.33 71 00 02 154 | 89.32d | 0d | Labor [31.18 h]; Foreman [15.59 h]; Operator [31.18 h]; Surveyor [15.59 h]; Surveyor Helper [15.59 h]; Excavator (With Bucket) [16 h]; Water Tanker [16 h]; Dump Truck [16 h]; Plate Compactor [16 h]; Drawpit with medium duty steel cover, size600x600x900mm, [2.43] | 14,384.57 | 0.0025348715507172 | Cons. | Z3 | SL | Cons | Cables | allElec | SUB.C | Cust. Rd 06 | SL |
| B2.33 71 00 02 158 |  | Drawpits Installation | 2d | 2026-11-02 | 2026-11-03 | B2.33 71 00 02 157 | 91.32d | 15.5d | Labor [31.18 h]; Laboratory Officer [15.59 h]; Carpenter [15.59 h]; Steelfixer [15.59 h]; Mason [15.59 h]; Surveyor [15.59 h]; Surveyor Helper [15.59 h]; Drawpit with medium duty steel cover, size600x600x900mm, [7.28] | 43,153.72 | 0.0076046146521516 | Cons. | Z3 | SL | Cons | Cables | allElec | SUB.C | Cust. Rd 06 | SL |
| B2.33 71 00 02 159 |  | Backfilling & Warrning Tape | 3d | 2026-11-22 | 2026-11-25 | B2.33 71 00 02 158, B2.33 71 00 02 60, B2.33 71 00 02 63, B2.33 71 00 02 156 | 75.82d | 6.5d | Labor [77.96 h]; Foreman [38.98 h]; Operator [155.92 h]; Surveyor [38.98 h]; Surveyor Helper [38.98 h]; Loader [40 h]; Water Tanker [40 h]; Dump Truck [40 h]; Plate Compactor [40 h]; Roller Compactor [40 h]; Drawpit with medium duty steel cover, size600x600x900mm, [2.43] | 14,384.57 | 0.0025348715507172 | Cons. | Z3 | SL | Cons | Cables | allElec | SUB.C | Cust. Rd 06 | SL |
|  | Cables | **Cables** |  | 2026-10-27 | 2026-11-17 |  |  |  |  |  |  |  |  |  |  |  |  |  |  |  |
|  | 4C,16+1C,16mm2 | **4C,16+1C,16mm2** |  | 2026-10-27 | 2026-11-17 |  |  |  |  |  |  |  |  |  |  |  |  |  |  |  |
| B2.33 71 19 182 |  | Land Adjustment | 3d | 2026-10-27 | 2026-10-31 | B2.33 71 00 01 18 | 18d | 0d | Labor [46.78 h]; Foreman [23.39 h]; Operator [31.18 h]; Surveyor [7.8 h]; Surveyor Helper [7.8 h]; Excavator (With Bucket) [24 h]; Water Tanker [24 h]; Dump Truck [24 h]; Roller Compactor [24 h]; Cable, Copper 4x16mm2/ CU/XLPE/SWA/PVC + 1x16mm2 CU/PVC [140] | 12,045.95 | 0.00230240106275966 | Cons. | Z3 | SL | Cons | Cables | allElec | SUB.C | Cust. Rd 06 | SL |
| B2.33 71 49.23.172 |  | Cable Pulling | 3d | 2026-10-31 | 2026-11-03 | B2.33 71 19 182 | 94d | 9.68d | Labor [62.37 h]; Foreman [31.18 h]; Surveyor [31.18 h]; Surveyor Helper [31.18 h]; Electrician [31.18 h]; Cable, Copper 4x16mm2/ CU/XLPE/SWA/PVC + 1x16mm2 CU/PVC [419.99] | 36,137.84 | 0.00690720318827892 | Cons. | Z3 | SL | Cons | Cables | allElec | SUB.C | Cust. Rd 06 | SL |
| B2.33 71 19 192 |  | Backfilling | 3d | 2026-11-15 | 2026-11-17 | B2.33 71 49.23.172, B2.33 71 19 132 SS | 84.32d | 0d | Labor [77.96 h]; Foreman [38.98 h]; Operator [77.96 h]; Surveyor [38.98 h]; Surveyor Helper [38.98 h]; Loader [40 h]; Water Tanker [40 h]; Dump Truck [40 h]; Plate Compactor [40 h]; Cable, Copper 4x16mm2/ CU/XLPE/SWA/PVC + 1x16mm2 CU/PVC [140] | 12,045.95 | 0.00230240106275966 | Cons. | Z3 | SL | Cons | Cables | allElec | SUB.C | Cust. Rd 06 | SL |
|  | SL Poles | **SL Poles** |  | 2026-11-10 | 2026-12-23 |  |  |  |  |  |  |  |  |  |  |  |  |  |  |  |
|  | Pole (16 M Dbl Arm) | **Pole (16 M Double Arm)** |  | 2026-11-10 | 2026-12-23 |  |  |  |  |  |  |  |  |  |  |  |  |  |  |  |
| B2.33 71 16.103 |  | Excavation | 3d | 2026-11-10 | 2026-11-14 | B2.33 71 16.90 SS | 77d | 0d | Labor [46.78 h]; Foreman [23.39 h]; Operator [46.78 h]; Surveyor [23.39 h]; Surveyor Helper [23.39 h]; Excavator (With Bucket) [24 h]; Dump Truck [24 h]; Lighting poles with 2 arms , height of (16 ) meters [0.9] | 19,388.56 | 0.00369325501598017 | Cons. | Z3 | SL | Cons | Pls&Lmn | allElec | SUB.C | Cust. Rd 06 | SL |
| B2.33 71 16.104 |  | PC & RC Foundation | 3d | 2026-11-14 | 2026-11-17 | B2.33 71 16.103 | 77d | 0d | Labor [77.96 h]; Foreman [38.98 h]; Laboratory Officer [38.98 h]; Carpenter [38.98 h]; Steelfixer [38.98 h]; Mason [38.98 h]; Lighting poles with 2 arms , height of (16 ) meters [0.9] | 19,388.56 | 0.00369325501598017 | Cons. | Z3 | SL | Cons | Pls&Lmn | allElec | SUB.C | Cust. Rd 06 | SL |
| B2.33 71 16.105 |  | Lighting Poles Installation Incl power box, Cables | 2d | 2026-11-17 | 2026-11-19 | B2.33 71 16.104 | 77d | 0d | Labor [93.55 h]; Operator [93.55 h]; Mobile Crane [48 h]; Electrician [46.78 h]; Lighting poles with 2 arms , height of (16 ) meters [1.81] | 39,100.27 | 0.00744806428222668 | Cons. | Z3 | SL | Cons | Pls&Lmn | allElec | SUB.C | Cust. Rd 06 | SL |
| B2.26.56.19.19 |  | Lighting Luminares Inst | 2d | 2026-12-20 | 2026-12-22 | B2.33 71 16.105, B2.26.56.19.2 | 50.91d | 0d | Labor [62.37 h]; Operator [62.37 h]; Manlift [32 h]; Street Lighting( LED), Lamp Lumen: 34805, Luminare Lumen:28310, complete with control gear and lamp, (190) WATT. [18] | 21,904.4 | 0.00418778207400471 | Cons. | Z3 | SL | Cons | Pls&Lmn | allElec | SUB.C | Cust. Rd 06 | SL |
| B2.33 71 16.106 |  | Backfilling, Grouting & Chamfering | 3d | 2026-12-20 | 2026-12-23 | B2.26.56.19.19 SS, B2.33 71 19 37 | 50.91d | 0d | Labor [93.55 h]; Foreman [46.78 h]; Mason [46.78 h]; Operator [93.55 h]; Surveyor [46.78 h]; Surveyor Helper [46.78 h]; Loader [48 h]; Water Tanker [48 h]; Dump Truck [48 h]; Plate Compactor [48 h]; Lighting poles with 2 arms , height of (16 ) meters [0.9] | 19,388.56 | 0.00369325501598017 | Cons. | Z3 | SL | Cons | Pls&Lmn | allElec | SUB.C | Cust. Rd 06 | SL |

| ID | WBS | Activity | Duration | Start | Finish | Predecessors | Complete | Planned start | Planned finish | Total float | Free float | Resources | Cost | Actual cost | Weight % | DMM2 Weekly Progress | DMM2 Zones | Networks & Stations | DMM2 Phases | Subcontractors works | Dmm2 Roads | Yellow Sheet | Networks Components |
| --- | --- | --- | --- | --- | --- | --- | --- | --- | --- | --- | --- | --- | --- | --- | --- | --- | --- | --- | --- | --- | --- | --- | --- |
|  | SL Pillars | **SL Pillars** |  | 2026-11-19 | 2026-11-23 |  |  |  |  |  |  |  |  |  |  |  |  |  |  |  |  |  |  |
| B2.33 71 26 033 |  | Pillars Installation (Internal Wiring) | 2d | 2026-11-19 | 2026-11-22 | B2.33 71 16.105, B2.33 71 26 013 |  |  |  | 85d | 0d | Labor [62.37 h]; Foreman [31.18 h]; Operator [62.37 h]; Boom Truck [32 h]; Electrician [31.18 h]; Street Lighting Feeder pillars, work shall include earthing for the lighting pillars. [1] | 16,342.35 |  | 0.00307259119104481 | Cons. | Z3 | SL | Cons | SUB.C | Cust. Rd 06 | SL |  |
| B2.33 71 26 044 |  | KWH meter mounting a frame installation | 1d | 2026-11-22 | 2026-11-23 | B2.33 71 26 033, B2.33 71 26 043 |  |  |  | 85d | 32.09d | Labor [62.37 h]; Foreman [31.18 h]; Operator [62.37 h]; Boom Truck [32 h]; Supply and installation of KWH meter mounting a frame only [6] | 52,153.33 |  | 0.00874002310873136 | Cons. | Z3 | SL | Cons | SUB.C | Cust. Rd 06 | SL |  |
|  | Earth & Road Works | **Earth & Road Works** |  | 2025-12-07 | 2026-12-26 |  |  |  |  |  |  |  |  |  |  |  |  |  |  |  |  |  |  |
|  | Earth Works | **Earth Works** |  | 2025-12-07 | 2025-12-14 |  |  |  |  |  |  |  |  |  |  |  |  |  |  |  |  |  |  |
| B1.2.31 23 16.01.14 |  | Roadway Excavation | 5.61d | 2025-12-07 A | 2025-12-12 A | DMM2-Eng-MS-78 | 100% | 2025-12-07 | 2025-12-13 |  |  | Roadway Excavation for cuttings (all types of soil) [31125.4]; Labor [28.35 h]; Foreman [14.17 h]; Operator [28.35 h]; Surveyor [14.17 h]; Surveyor Helper [14.17 h]; Excavator (With Bucket) [16 h]; Water Tanker [16 h]; Dump Truck [16 h] | 464,578.09 | 464,578.09 | 5.673069545122E-005 | Cons. | Z3 | Roads | Cons |  | Cust. Rd 06 |  |  |
| B1.2.31 23 23.01.14 |  | Embankment Backfiling | 6d | 2025-12-07 A | 2025-12-14 A | B1.2.31 23 16.01.14 | 100% |  |  |  |  | Embankment backfiling [10910]; Labor [42.52 h]; Foreman [21.26 h]; Operator [42.52 h]; Surveyor [21.26 h]; Surveyor Helper [21.26 h]; Loader [24 h]; Water Tanker [24 h]; Dump Truck [24 h]; Plate Compactor [24 h]; Roller Compactor [24 h] | 296,947.77 | 296,947.77 | 0.0394105166160444 | Cons. | Z3 | Roads | Cons |  | Cust. Rd 06 |  |  |
|  | Earth Layers | **Earth Layers** |  | 2026-04-01 | 2026-10-22 |  |  |  |  |  |  |  |  |  |  |  |  |  |  |  |  |  |  |
| B1.2.32 11 13.01.14 |  | Subgrade (65.00% Completed) | 140d | 2026-04-01 A | 2026-09-15 A | B1.2.31 23 23.01.14 | 100% |  |  |  |  | Subgrade [601.9]; Labor [30.41 h]; Foreman [15.2 h]; Operator [30.41 h]; Surveyor [15.2 h]; Surveyor Helper [15.2 h]; Grader [15.6 h]; Loader [15.6 h]; Water Tanker [15.6 h]; Dump Truck [15.6 h]; Plate Compactor [15.6 h]; Roller Compactor [15.6 h] | 17,967.84 | 17,967.84 | 0.0162098206973542 | Cons. | Z3 | Roads | Cons |  | Cust. Rd 06 | Sub | Roads |
| B1.2.32 11 23.01.14 |  | Aggregate Base Course (49.00% Completed) | 96.94d | 2026-05-21 A | 2026-09-15 A | B1.2.32 11 13.01.14 FF | 100% |  |  |  |  | Aggregate base course [302.49]; Labor [22.92 h]; Foreman [11.46 h]; Operator [22.92 h]; Surveyor [11.46 h]; Surveyor Helper [11.46 h]; Grader [11.76 h]; Loader [11.76 h]; Water Tanker [11.76 h]; Dump Truck [11.76 h]; Plate Compactor [11.76 h]; Roller Compactor [11.76 h] | 26,293.12 | 26,293.12 | 0.0305516247788813 | Cons. | Z3 | Roads | Cons |  | Cust. Rd 06 | Agg | Roads |
| B1.2.32 11 13.01.14_R |  | Subgrade(Rem) | 1.05d | 2026-10-21 | 2026-10-22 | B1.2.31 23 23.01.14, B1.2.32 11 13.01.14 |  |  |  | 112.27d | 0.48d | Subgrade [324.1]; Labor [16.37 h]; Foreman [8.19 h]; Operator [16.37 h]; Surveyor [8.19 h]; Surveyor Helper [8.19 h]; Grader [8.4 h]; Loader [8.4 h]; Water Tanker [8.4 h]; Dump Truck [8.4 h]; Plate Compactor [8.4 h]; Roller Compactor [8.4 h] | 9,674.99 |  | 0.0162098206973542 | Cons. | Z3 | Roads | Cons |  | Cust. Rd 06 | Sub | Roads |
| B1.2.32 11 23.01.14_R |  | Aggregate Base Course(Rem) | 1.53d | 2026-10-21 | 2026-10-22 | B1.2.32 11 13.01.14_R FF, B1.2.32 11 23.01.14 |  |  |  | 111.79d |  | Aggregate base course [314.84]; Labor [23.86 h]; Foreman [11.93 h]; Operator [23.86 h]; Surveyor [11.93 h]; Surveyor Helper [11.93 h]; Grader [12.24 h]; Loader [12.24 h]; Water Tanker [12.24 h]; Dump Truck [12.24 h]; Plate Compactor [12.24 h]; Roller Compactor [12.24 h] | 27,366.31 |  | 0.0305516247788813 | Cons. | Z3 | Roads | Cons |  | Cust. Rd 06 | Agg | Roads |
|  | Interlock | **Interlock** |  | 2026-12-23 | 2026-12-26 |  |  |  |  |  |  |  |  |  |  |  |  |  |  |  |  |  |  |
| B1.2.32 14 13.13.14 |  | 60mm thick - Interlocking Block Pavers | 2d | 2026-12-23 | 2026-12-26 | B2.33 71 16.106 |  |  |  | 50.91d | 0d | 60mm thick - Interlocking block pavers for sidewalks and medians [220.39]; Labor [93.55 h]; Foreman [46.78 h]; Mason [46.78 h]; Operator [93.55 h]; JCB [48 h] | 14,706.05 |  | 0.00816441113035917 | Cons. | Z3 | Roads | Cons |  | Cust. Rd 06 |  | Roads |
|  | Curbstone | **Curbstone** |  | 2026-11-10 | 2026-11-26 |  |  |  |  |  |  |  |  |  |  |  |  |  |  |  |  |  |  |
|  | Pre Install | **Pre-Installation** |  | 2026-11-10 | 2026-11-17 |  |  |  |  |  |  |  |  |  |  |  |  |  |  |  |  |  |  |
| B2.31 23 00.391 |  | Excavation | 2d | 2026-11-10 | 2026-11-12 | B2.31 23 00.311 SS |  |  |  | 23d | 0d | Curb Stone, Type K1 [35.6]; Dropped Curb, Type K3 [0.76]; Edge Curb, Type K4 [26.12]; Heel Curb, Type K5 [17.18]; Transition Curb [0.27]; Labor [31.18 h]; Foreman [15.59 h]; Operator [31.18 h]; Surveyor [15.59 h]; Surveyor Helper [15.59 h]; JCB [16 h]; Water Tanker [16 h]; Dump Truck [16 h]; Plate Compactor [16 h] | 5,843.95 |  | 0.00329987959361014 | Cons. | Z3 | Roads | Cons |  | Cust. Rd 06 |  | Roads |
| B1.2.32 14 13.13.214 |  | PCC | 2d | 2026-11-12 | 2026-11-15 | B2.31 23 00.391 |  |  |  | 23d | 0d | Curb Stone, Type K1 [35.6]; Dropped Curb, Type K3 [0.76]; Edge Curb, Type K4 [26.12]; Heel Curb, Type K5 [17.18]; Transition Curb [0.27]; Labor [46.78 h]; Mason [23.39 h]; Surveyor [23.39 h]; Surveyor Helper [23.39 h] | 5,843.95 |  | 0.00329987959361014 | Cons. | Z3 | Roads | Cons |  | Cust. Rd 06 |  | Roads |
| 32 16 13.0014 |  | Haunching | 2d | 2026-11-15 | 2026-11-17 | B1.2.32 14 13.13.214 |  |  |  | 23d | 0d | Curb Stone, Type K1 [35.6]; Dropped Curb, Type K3 [0.76]; Edge Curb, Type K4 [26.12]; Heel Curb, Type K5 [17.18]; Transition Curb [0.27]; Labor [77.96 h]; Carpenter [38.98 h]; Mason [38.98 h]; Surveyor [38.98 h]; Surveyor Helper [38.98 h] | 5,843.95 |  | 0.00329987959361014 | Cons. | Z3 | Roads | Cons |  | Cust. Rd 06 |  | Roads |
|  | Installation | **Installation** |  | 2026-11-17 | 2026-11-26 |  |  |  |  |  |  |  |  |  |  |  |  |  |  |  |  |  |  |
| B1.2.32 16.13.01.14 |  | Curb Stone, Type K1 | 2d | 2026-11-17 | 2026-11-19 | 32 16 13.0014 |  |  |  | 23d | 0d | Curb Stone, Type K1 [106.78]; Labor [46.78 h]; Foreman [23.39 h]; Mason [23.39 h]; Operator [46.78 h]; Surveyor [23.39 h]; Surveyor Helper [23.39 h]; JCB [24 h] | 8,063.06 |  | 0.00475570209439274 | Cons. | Z3 | Roads | Cons |  | Cust. Rd 06 |  | Roads |
| B1.2.32 16.13.02.13 |  | Dropped Curb, Type K3 | 2d | 2026-11-19 | 2026-11-22 | B1.2.32 16.13.01.14, 32 16 13.0014 |  |  |  | 23d | 0d | Dropped Curb, Type K3 [1.31]; Labor [31.18 h]; Foreman [15.59 h]; Mason [15.59 h]; Operator [31.18 h]; Surveyor [15.59 h]; Surveyor Helper [15.59 h]; JCB [16 h] | 105.61 |  | 6.17174832201113E-005 | Cons. | Z3 | Roads | Cons |  | Cust. Rd 06 |  | Roads |
| B1.2.32 16.13.03.14 |  | Edge Curb, Type K4 | 2d | 2026-11-22 | 2026-11-24 | B1.2.32 16.13.02.13, 32 16 13.0014 |  |  |  | 23d | 0d | Edge Curb, Type K4 [1157.86]; Labor [77.96 h]; Foreman [38.98 h]; Mason [38.98 h]; Operator [77.96 h]; Surveyor [38.98 h]; Surveyor Helper [38.98 h]; JCB [40 h] | 87,427.98 |  | 0.0481474295458261 | Cons. | Z3 | Roads | Cons |  | Cust. Rd 06 |  | Roads |
| B1.2.32 16.13.0414 |  | Heel Curb, Type K5 | 2d | 2026-11-24 | 2026-11-26 | B1.2.32 16.13.03.14, 32 16 13.0014 |  |  |  | 23d | 0d | Heel Curb, Type K5 [52.82]; Labor [46.78 h]; Foreman [23.39 h]; Mason [23.39 h]; Operator [46.78 h]; Surveyor [23.39 h]; Surveyor Helper [23.39 h]; JCB [24 h] | 3,385.16 |  | 0.0017816527074046 | Cons. | Z3 | Roads | Cons |  | Cust. Rd 06 |  | Roads |
| B1.2.32 16.13.05.13 |  | Transition Curb | 2d | 2026-11-24 | 2026-11-26 | B1.2.32 16.13.0414 SS, 32 16 13.0014 |  |  |  | 23d | 0d | Transition Curb [0.57]; Labor [31.18 h]; Foreman [15.59 h]; Mason [15.59 h]; Operator [31.18 h]; Surveyor [15.59 h]; Surveyor Helper [15.59 h]; JCB [16 h] | 46.1 |  | 2.80039080268307E-005 | Cons. | Z3 | Roads | Cons |  | Cust. Rd 06 |  | Roads |

| ID | WBS | Activity | Duration | Start | Finish | Predecessors | Complete | Remaining | Planned start | Planned finish | Total float | Free float | Resources | Cost | Actual cost | Weight % | DMM2 Weekly Progress | DMM2 Zones | Networks & Stations | DMM2 Phases | Networks Components | Dmm2 Roads | Yellow Sheet | UNASCO | Subcontractors works |
| --- | --- | --- | --- | --- | --- | --- | --- | --- | --- | --- | --- | --- | --- | --- | --- | --- | --- | --- | --- | --- | --- | --- | --- | --- | --- |
|  | Finishing | **Finishing** |  | 2026-11-24 | 2026-11-26 |  |  |  |  |  |  |  |  |  |  |  |  |  |  |  |  |  |  |  |  |
| 32 16 13.014 |  | Finishing, Fareface | 2d | 2026-11-24 | 2026-11-26 | B1.2.32 16.13.01.14, B1.2.32 16.13.02.13, B1.2.32 16.13.03.14 SS, B1.2.32 16.13.0414 SS, B1.2.32 16.13.05.13 SS |  |  |  |  | 23d | 2.18d | Curb Stone, Type K1 [23.73]; Dropped Curb, Type K3 [0.28]; Edge Curb, Type K4 [17.41]; Heel Curb, Type K5 [11.74]; Transition Curb [0.33]; Labor [62.37 h]; Mason [31.18 h] | 3,908.51 |  | 0.00220645414702391 | Cons. | Z3 | Roads | Cons | Roads | Cust. Rd 06 |  |  |  |
|  | Asphalt Layers | **Asphalt Layers** |  | 2026-05-25 | 2026-12-03 |  |  |  |  |  |  |  |  |  |  |  |  |  |  |  |  |  |  |  |  |
| B1.2.32 11 26.01.14 |  | Bituminous Base Course including Prime Coat (MC1) and tack coat (RC2) (74.00% Completed) | 93.94d | 2026-05-25 A | 2026-09-15 A | B1.2.32 11 23.01.14 SS | 100% |  |  |  |  |  | Bituminous base course(Grading I - Class A) [313]; Labor [23.08 h]; Foreman [11.54 h]; Operator [23.08 h]; Surveyor [11.54 h]; Surveyor Helper [11.54 h]; Dump Truck [11.84 h]; Roller Compactor [11.84 h]; MC1/RC2 Sprayer [11.84 h] | 172,035.15 | 172,035.15 | 0.128244521417224 | Cons. | Z3 | Roads | Cons | Roads | Cust. Rd 06 | BBC |  |  |
| B1.2.32 11 26.01.14_R |  | Bituminous Base Course including Prime Coat (MC1) and tack coat (RC2)(Rem) | 2d | 2026-09-24 A | 2026-10-22 | B1.2.32 11 23.01.14_R SS, B1.2.32 11 26.01.14 | 12% | 1.76d | 2026-09-16 | 2026-09-17 | 52.56d | 31.74d | Bituminous base course(Grading I - Class A) [109.97]; Labor [8.11 h]; Foreman [4.05 h]; Operator [8.11 h]; Surveyor [4.05 h]; Surveyor Helper [4.05 h]; Dump Truck [4.16 h]; Roller Compactor [4.16 h]; MC1/RC2 Sprayer [4.16 h] | 60,444.78 | 49,100.9 | 0.128244521417224 | Cons. | Z3 | Roads | Cons | Roads | Cust. Rd 06 | BBC |  |  |
| B1.2.32 12 16.01.14 |  | Bituminous concrete Wearing Course, including tack coat (RC2) | 4d | 2026-11-29 | 2026-12-03 | B1.2.32 11 26.01.14_R, B7.32 31 26.01-194, 32 16 13.014, DMM2-Proc-Delv-7265 FF |  |  |  |  | 20.82d | 0d | Bituminous concrete wearing course, after compaction(Grading I - Class A), including tack coat (RC2) [154.77]; Labor [31.18 h]; Foreman [15.59 h]; Operator [31.18 h]; Surveyor [15.59 h]; Surveyor Helper [15.59 h]; Dump Truck [16 h]; Roller Compactor [16 h]; MC1/RC2 Sprayer [16 h] | 91,315.73 |  | 0.0503469376880816 | Cons. | Z3 | Roads | Cons | Roads | Cust. Rd 06 | BWC |  |  |
|  | Pavement Marking | **Pavement Marking** |  | 2026-12-03 | 2026-12-06 |  |  |  |  |  |  |  |  |  |  |  |  |  |  |  |  |  |  |  |  |
| B1.2.32 17 23.01.14 |  | Retroreflective Thermoplastic White Traffic lines | 2d | 2026-12-03 | 2026-12-06 | B1.2.32 12 16.01.14, B1.2.32 17 23.02.14 FF |  |  |  |  | 73.82d | 0d | Retroreflective Thermoplastic White Traffic lines [52.46]; Labor [46.78 h]; Mason [23.39 h]; Road Marking Machine [24 h] | 1,566.14 |  | 0.000787376507119355 | Cons. | Z3 | Roads | Cons | Roads | Cust. Rd 06 |  |  |  |
| B1.2.32 17 23.02.14 |  | Retroreflective Thermoplastic Yellow, Traffic lines | 2d | 2026-12-03 | 2026-12-06 | B1.2.32 12 16.01.14 |  |  |  |  | 73.82d | 0d | Retroreflective Thermoplastic Yellow, Traffic lines [25.15]; Labor [31.18 h]; Mason [15.59 h]; Road Marking Machine [16 h] | 750.63 |  | 0.000377380044577072 | Cons. | Z3 | Roads | Cons | Roads | Cust. Rd 06 |  |  |  |
|  | Traffic Signs | **Traffic Signs** |  | 2026-11-10 | 2026-12-06 |  |  |  |  |  |  |  |  |  |  |  |  |  |  |  |  |  |  |  |  |
|  | Pre Install | **Pre-Installation** |  | 2026-11-10 | 2026-11-15 |  |  |  |  |  |  |  |  |  |  |  |  |  |  |  |  |  |  |  |  |
| B2.31 23 00.401 |  | Excavation | 2d | 2026-11-10 | 2026-11-12 | B2.31 23 00.391 SS |  |  |  |  | 90d | 0d | Traffic signs, ground mounted, 1 Sheet Alumenium, (breakaway) Single post [0.34]; Labor [31.18 h]; Foreman [15.59 h]; Operator [31.18 h]; Surveyor [15.59 h]; Surveyor Helper [15.59 h]; JCB [16 h]; Water Tanker [16 h]; Dump Truck [16 h]; Plate Compactor [16 h] | 379.42 |  | 0.000190753211424605 | Cons. | Z3 | Roads | Cons | Roads | Cust. Rd 06 |  |  |  |
| 10 14 53.014 |  | Foundation | 2d | 2026-11-12 | 2026-11-15 | B2.31 23 00.401 |  |  |  |  | 90d | 16.18d | Traffic signs, ground mounted, 1 Sheet Alumenium, (breakaway) Single post [0.32]; Labor [31.18 h]; Carpenter [15.59 h]; Steelfixer [15.59 h]; Mason [15.59 h]; Surveyor [15.59 h]; Surveyor Helper [15.59 h] | 357.1 |  | 0.000179532434281981 | Cons. | Z3 | Roads | Cons | Roads | Cust. Rd 06 |  |  |  |
|  | Installation | **Installation** |  | 2026-12-03 | 2026-12-06 |  |  |  |  |  |  |  |  |  |  |  |  |  |  |  |  |  |  |  |  |
| B1.2.10 14 53.0114 |  | 1 Sheet Alumenium, Single post | 2d | 2026-12-03 | 2026-12-06 | 10 14 53.014, B1.2.32 17 23.02.14 FF, B1.2.32 17 23.01.14 FF, B1.2.10 14 53.018, B1.2.10 14 53.028 |  |  |  |  | 73.82d | 22.91d | Traffic signs, ground mounted, 1 Sheet Alumenium, (breakaway) Single post [0.97]; Labor [31.18 h]; Foreman [15.59 h]; Operator [31.18 h]; JCB [16 h] | 1,082.46 |  | 0.000544207691417253 | Cons. | Z3 | Roads | Cons | Roads | Cust. Rd 06 |  |  |  |
|  | Landscape | **Landscape** |  | 2026-11-07 | 2026-11-29 |  |  |  |  |  |  |  |  |  |  |  |  |  |  |  |  |  |  |  |  |
|  | Fences | **Fences** |  | 2026-11-07 | 2026-11-29 |  |  |  |  |  |  |  |  |  |  |  |  |  |  |  |  |  |  |  |  |
|  | (ZATCA HCIS) | **Steel fence (ZATCA HCIS)** |  | 2026-11-07 | 2026-11-29 |  |  |  |  |  |  |  |  |  |  |  |  |  |  |  |  |  |  |  |  |
| B7.32 31 26.01-190 |  | Earthwork | 6d | 2026-11-07 | 2026-11-14 | B7.32 31 26.01-19 |  |  |  |  | 20.82d | 0d | Labor [62.37 h]; Foreman [31.18 h]; Operator [62.37 h]; Surveyor [31.18 h]; Surveyor Helper [31.18 h]; Excavator (With Bucket) [32 h]; Water Tanker [32 h]; Dump Truck [32 h]; Plate Compactor [32 h]; Steel fence (ZATCA HCIS) [116.81] | 25,743.45 |  | 0.0145109845928078 | Cons. | Z3 | Landscp | Cons | Fncs&Gt | Cust. Rd 06 | ZTK.Fns |  |  |
| B7.32 31 26.01-192 |  | Foundation | 6d | 2026-11-14 | 2026-11-21 | B7.32 31 26.01-190 |  |  |  |  | 20.82d | 0d | Labor [77.96 h]; Laboratory Officer [38.98 h]; Carpenter [38.98 h]; Steelfixer [38.98 h]; Mason [38.98 h]; Surveyor [38.98 h]; Surveyor Helper [38.98 h]; Steel fence (ZATCA HCIS) [116.81] | 25,743.45 |  | 0.0145109845928078 | Cons. | Z3 | Landscp | Cons | Fncs&Gt | Cust. Rd 06 | ZTK.Fns |  |  |
| B7.32 31 26.01-194 |  | Fence Installation | 7d | 2026-11-21 | 2026-11-29 | B7.32 31 26.01-192 |  |  |  |  | 20.82d | 0d | Labor [124.74 h]; Foreman [62.37 h]; Welder [62.37 h]; Mason [62.37 h]; Operator [124.74 h]; Boom Truck [64 h]; Welding Machine [64 h]; Steel fence (ZATCA HCIS) [545.12] | 120,133.48 |  | 0.0677164508164642 | Cons. | Z3 | Landscp | Cons | Fncs&Gt | Cust. Rd 06 | ZTK.Fns |  |  |
|  | Customs Rd 02 | **Customs Road 02** |  | 2025-12-12 | 2026-12-19 |  |  |  |  |  |  |  |  |  |  |  |  |  |  |  |  |  |  |  |  |
|  | Wet Networks | **Wet Networks** |  | 2026-02-08 | 2026-11-21 |  |  |  |  |  |  |  |  |  |  |  |  |  |  |  |  |  |  |  |  |
|  | Sewerage Network | **Sewerage Network** |  | 2026-02-08 | 2026-11-09 |  |  |  |  |  |  |  |  |  |  |  |  |  |  |  |  |  |  |  |  |
|  | GRP | **GRP Pipes** |  | 2026-02-08 | 2026-10-21 |  |  |  |  |  |  |  |  |  |  |  |  |  |  |  |  |  |  |  |  |
|  | 200 | **?150** |  | 2026-02-11 | 2026-10-21 |  |  |  |  |  |  |  |  |  |  |  |  |  |  |  |  |  |  |  |  |
|  | 1 | **Depth From 1.5m to 2.5m** |  | 2026-02-11 | 2026-10-21 |  |  |  |  |  |  |  |  |  |  |  |  |  |  |  |  |  |  |  |  |
| B5.33 31 00.01.1 |  | Excavation | 2d | 2026-02-11 A | 2026-02-12 A | B1.1.31 23 23.132 SS | 100% |  |  |  |  |  | Labor [28.35 h]; Foreman [14.17 h]; Operator [28.35 h]; Surveyor [14.17 h]; Surveyor Helper [14.17 h]; Excavator (With Bucket) [16 h]; Water Tanker [16 h]; Dump Truck [16 h]; Plate Compactor [16 h]; Sew Dia. 150mm Depth: 1.51m - 2.5m [15.67] | 4,500.25 | 4,500.25 | 0.00104261322598816 | Cons. | Z3 | Sew | Cons | GRPs | Cust. Rd 02 | Sew | CS.UNSC | SUB.C |
| B5.33 31 00.01.9 |  | Sand Bedding | 2d | 2026-02-14 A | 2026-02-15 A | B5.33 31 00.01.1 | 100% |  |  |  |  |  | Labor [28.35 h]; Foreman [14.17 h]; Operator [56.7 h]; Surveyor [14.17 h]; Surveyor Helper [14.17 h]; Loader [16 h]; Water Tanker [16 h]; Dump Truck [16 h]; Plate Compactor [16 h]; Sew Dia. 150mm Depth: 1.51m - 2.5m [3.92] | 1,124.18 | 1,124.18 | 0.000260448551346613 | Cons. | Z3 | Sew | Cons | GRPs | Cust. Rd 02 | Sew | CS.UNSC | SUB.C |
| B5.33 31 00.01.17 |  | Pipe Laying | 1d | 2026-02-16 A | 2026-02-16 A | B5.33 31 00.01.9 | 100% |  |  |  |  |  | Labor [28.35 h]; Foreman [14.17 h]; Plumber Helper [14.17 h]; Plumber [14.17 h]; Operator [14.17 h]; Surveyor [14.17 h]; Surveyor Helper [14.17 h]; Mobile Crane [16 h]; Sew Dia. 150mm Depth: 1.51m - 2.5m [35.26] | 10,124.68 | 10,124.68 | 0.00234567500332294 | Cons. | Z3 | Sew | Cons | GRPs | Cust. Rd 02 | Sew | CS.UNSC | SUB.C |
| B5.33 31 00.01.25 |  | Embedment & Test (9.95% Completed) | 113d | 2026-05-03 A | 2026-09-15 A | B5.33 31 00.01.17 | 100% |  |  |  |  |  | Labor [6.21 h]; Foreman [3.1 h]; Plumber Helper [3.1 h]; Plumber [3.1 h]; Operator [6.21 h]; Surveyor [3.1 h]; Surveyor Helper [3.1 h]; Loader [3.19 h]; Water Tanker [3.19 h]; Dump Truck [3.19 h]; Plate Compactor [3.19 h]; Roller Compactor [3.19 h]; Sew Dia. 150mm Depth: 1.51m - 2.5m [1.56] | 447.92 | 447.92 | 0.00104261322598816 | Cons. | Z3 | Sew | Cons | GRPs | Cust. Rd 02 | Sew | CS.UNSC | SUB.C |
| B5.33 31 00.01.33 |  | Backfilling & Warrning Tape (9.95% Completed) | 110.05d | 2026-05-05 A | 2026-09-15 A | B5.33 31 00.01.25 FF, B5.33 31 23.025 SS | 100% |  |  |  |  |  | Labor [7.76 h]; Foreman [3.88 h]; Operator [15.52 h]; Surveyor [3.88 h]; Surveyor Helper [3.88 h]; Loader [3.98 h]; Water Tanker [3.98 h]; Dump Truck [3.98 h]; Plate Compactor [3.98 h]; Roller Compactor [3.98 h]; Sew Dia. 150mm Depth: 1.51m - 2.5m [0.78] | 224.14 | 224.14 | 0.000521716123294941 | Cons. | Z3 | Sew | Cons | GRPs | Cust. Rd 02 | Sew | CS.UNSC | SUB.C |
| B5.33 31 00.01.25_R |  | Embedment & Test(Rem) | 3.67d | 2026-09-24 A | 2026-10-21 | B5.33 31 00.01.17, B5.33 31 00.01.25 | 80% | 0.73d | 2026-09-16 | 2026-09-20 | 112.59d |  | Labor [56.16 h]; Foreman [28.08 h]; Plumber Helper [28.08 h]; Plumber [28.08 h]; Operator [56.16 h]; Surveyor [28.08 h]; Surveyor Helper [28.08 h]; Loader [28.81 h]; Water Tanker [28.81 h]; Dump Truck [28.81 h]; Plate Compactor [28.81 h]; Roller Compactor [28.81 h]; Sew Dia. 150mm Depth: 1.51m - 2.5m [14.11] | 4,052.33 | 3,717.17 | 0.00104261322598816 | Cons. | Z3 | Sew | Cons | GRPs | Cust. Rd 02 | Sew | CS.UNSC | SUB.C |
| B5.33 31 00.01.33_R |  | Backfilling & Warrning Tape(Rem) | 4.56d | 2026-09-26 A | 2026-10-12 A | B5.33 31 00.01.25_R FF, B5.33 31 23.025_R SS, B5.33 31 00.01.33 | 100% |  | 2026-09-16 | 2026-09-21 |  |  | Labor [70.2 h]; Foreman [35.1 h]; Operator [140.4 h]; Surveyor [35.1 h]; Surveyor Helper [35.1 h]; Loader [36.02 h]; Water Tanker [36.02 h]; Dump Truck [36.02 h]; Plate Compactor [36.02 h]; Roller Compactor [36.02 h]; Sew Dia. 150mm Depth: 1.51m - 2.5m [7.06] | 2,027.76 | 2,027.76 | 0.000521716123294941 | Cons. | Z3 | Sew | Cons | GRPs | Cust. Rd 02 | Sew | CS.UNSC | SUB.C |

| ID | WBS | Activity | Duration | Start | Finish | Predecessors | Complete | Remaining | Planned start | Planned finish | Total float | Resources | Cost | Actual cost | Weight % | DMM2 Weekly Progress | DMM2 Zones | Networks & Stations | DMM2 Phases | UNASCO | Networks Components | Subcontractors works | Dmm2 Roads | Yellow Sheet |
| --- | --- | --- | --- | --- | --- | --- | --- | --- | --- | --- | --- | --- | --- | --- | --- | --- | --- | --- | --- | --- | --- | --- | --- | --- |
|  | 1 | **?200** |  | 2026-02-08 | 2026-10-21 |  |  |  |  |  |  |  |  |  |  |  |  |  |  |  |  |  |  |  |
|  | 4 | **Depth From 2.5m to 3.5m** |  | 2026-02-08 | 2026-10-21 |  |  |  |  |  |  |  |  |  |  |  |  |  |  |  |  |  |  |  |
| B5.33 31 00.01.3 |  | Excavation | 3d | 2026-02-08 A | 2026-02-10 A | B5.33 31 00.01.1 | 100% |  |  |  |  | Labor [28.35 h]; Foreman [14.17 h]; Operator [28.35 h]; Surveyor [14.17 h]; Surveyor Helper [14.17 h]; Excavator (With Bucket) [16 h]; Water Tanker [16 h]; Dump Truck [16 h]; Plate Compactor [16 h]; Sew Dia. 200mm Depth: 2.51m - 3.5m [62.03] | 24,727.59 | 24,727.59 | 0.00646094324563673 | Cons. | Z3 | Sew | Cons | CS.UNSC | GRPs | SUB.C | Cust. Rd 02 | Sew |
| B5.33 31 00.01.11 |  | Sand Bedding | 1d | 2026-02-11 A | 2026-02-11 A | B5.33 31 00.01.3 | 100% |  |  |  |  | Labor [28.35 h]; Foreman [14.17 h]; Operator [56.7 h]; Surveyor [14.17 h]; Surveyor Helper [14.17 h]; Loader [16 h]; Water Tanker [16 h]; Dump Truck [16 h]; Plate Compactor [16 h]; Sew Dia. 200mm Depth: 2.51m - 3.5m [15.5] | 6,179.72 | 6,179.72 | 0.001614667266597 | Cons. | Z3 | Sew | Cons | CS.UNSC | GRPs | SUB.C | Cust. Rd 02 | Sew |
| B5.33 31 00.01.19 |  | Pipe Laying | 1.75d | 2026-02-12 A | 2026-02-14 A | B5.33 31 00.01.11 | 100% |  |  |  |  | Labor [28.35 h]; Foreman [14.17 h]; Plumber Helper [14.17 h]; Plumber [14.17 h]; Operator [14.17 h]; Surveyor [14.17 h]; Surveyor Helper [14.17 h]; Mobile Crane [16 h]; Sew Dia. 200mm Depth: 2.51m - 3.5m [139.57] | 55,634.89 | 55,634.89 | 0.0145365537578704 | Cons. | Z3 | Sew | Cons | CS.UNSC | GRPs | SUB.C | Cust. Rd 02 | Sew |
| B5.33 31 00.01.27 |  | Embedment & Test (9.95% Completed) | 113d | 2026-05-03 A | 2026-09-15 A | B5.33 31 00.01.19 | 100% |  |  |  |  | Labor [6.21 h]; Foreman [3.1 h]; Plumber Helper [3.1 h]; Plumber [3.1 h]; Operator [6.21 h]; Surveyor [3.1 h]; Surveyor Helper [3.1 h]; Loader [3.19 h]; Water Tanker [3.19 h]; Dump Truck [3.19 h]; Plate Compactor [3.19 h]; Roller Compactor [3.19 h]; Sew Dia. 200mm Depth: 2.51m - 3.5m [6.17] | 2,461.21 | 2,461.21 | 0.00646094324563673 | Cons. | Z3 | Sew | Cons | CS.UNSC | GRPs | SUB.C | Cust. Rd 02 | Sew |
| B5.33 31 00.01.35 |  | Backfilling & Warrning Tape (9.95% Completed) | 106d | 2026-05-11 A | 2026-09-15 A | B5.33 31 00.01.27 FF | 100% |  |  |  |  | Labor [7.76 h]; Foreman [3.88 h]; Operator [15.52 h]; Surveyor [3.88 h]; Surveyor Helper [3.88 h]; Loader [3.98 h]; Water Tanker [3.98 h]; Dump Truck [3.98 h]; Plate Compactor [3.98 h]; Roller Compactor [3.98 h]; Sew Dia. 200mm Depth: 2.51m - 3.5m [3.09] | 1,230.6 | 1,230.6 | 0.00323047162281836 | Cons. | Z3 | Sew | Cons | CS.UNSC | GRPs | SUB.C | Cust. Rd 02 | Sew |
| B5.33 31 00.01.27_R |  | Embedment & Test(Rem) | 3.67d | 2026-09-24 A | 2026-10-21 | B5.33 31 00.01.19, B5.33 31 00.01.27 | 80% | 0.73d | 2026-09-16 | 2026-09-20 | 112.59d | Labor [56.16 h]; Foreman [28.08 h]; Plumber Helper [28.08 h]; Plumber [28.08 h]; Operator [56.16 h]; Surveyor [28.08 h]; Surveyor Helper [28.08 h]; Loader [28.81 h]; Water Tanker [28.81 h]; Dump Truck [28.81 h]; Plate Compactor [28.81 h]; Roller Compactor [28.81 h]; Sew Dia. 200mm Depth: 2.51m - 3.5m [55.86] | 22,266.38 | 20,424.8 | 0.00646094324563673 | Cons. | Z3 | Sew | Cons | CS.UNSC | GRPs | SUB.C | Cust. Rd 02 | Sew |
| B5.33 31 00.01.35_R |  | Backfilling & Warrning Tape(Rem) | 4.56d | 2026-09-26 A | 2026-10-12 A | B5.33 31 00.01.27_R FF, B5.33 31 00.01.35 | 100% |  | 2026-09-16 | 2026-09-21 |  | Labor [70.2 h]; Foreman [35.1 h]; Operator [140.4 h]; Surveyor [35.1 h]; Surveyor Helper [35.1 h]; Loader [36.02 h]; Water Tanker [36.02 h]; Dump Truck [36.02 h]; Plate Compactor [36.02 h]; Roller Compactor [36.02 h]; Sew Dia. 200mm Depth: 2.51m - 3.5m [27.93] | 11,133.19 | 11,133.19 | 0.00323047162281836 | Cons. | Z3 | Sew | Cons | CS.UNSC | GRPs | SUB.C | Cust. Rd 02 | Sew |
|  | 3 | **Depth From 3.5m to 4.5m** |  | 2026-02-10 | 2026-10-21 |  |  |  |  |  |  |  |  |  |  |  |  |  |  |  |  |  |  |  |
| B5.33 31 00.01.5 |  | Excavation | 3d | 2026-02-10 A | 2026-02-12 A | B5.33 31 00.01.3 | 100% |  |  |  |  | Labor [28.35 h]; Foreman [14.17 h]; Operator [28.35 h]; Surveyor [14.17 h]; Surveyor Helper [14.17 h]; Excavator (With Bucket) [16 h]; Water Tanker [16 h]; Dump Truck [16 h]; Plate Compactor [16 h]; Sew Dia. 200mm Depth: 3.51m - 4.5m [83.61] | 38,392.5 | 38,392.5 | 0.00797337574002583 | Cons. | Z3 | Sew | Cons | CS.UNSC | GRPs | SUB.C | Cust. Rd 02 | Sew |
| B5.33 31 00.01.13 |  | Sand Bedding | 1.75d | 2026-02-12 A | 2026-02-14 A | B5.33 31 00.01.5 | 100% |  |  |  |  | Labor [28.35 h]; Foreman [14.17 h]; Operator [56.7 h]; Surveyor [14.17 h]; Surveyor Helper [14.17 h]; Loader [16 h]; Water Tanker [16 h]; Dump Truck [16 h]; Plate Compactor [16 h]; Sew Dia. 200mm Depth: 3.51m - 4.5m [20.91] | 9,599.7 | 9,599.7 | 0.00199367141059952 | Cons. | Z3 | Sew | Cons | CS.UNSC | GRPs | SUB.C | Cust. Rd 02 | Sew |
| B5.33 31 00.01.21 |  | Pipe Laying | 0.5d | 2026-02-15 A | 2026-02-16 A | B5.33 31 00.01.13 | 100% |  |  |  |  | Labor [28.35 h]; Foreman [14.17 h]; Plumber Helper [14.17 h]; Plumber [14.17 h]; Operator [14.17 h]; Surveyor [14.17 h]; Surveyor Helper [14.17 h]; Mobile Crane [16 h]; Sew Dia. 200mm Depth: 3.51m - 4.5m [188.12] | 86,384.7 | 86,384.7 | 0.0179404228906512 | Cons. | Z3 | Sew | Cons | CS.UNSC | GRPs | SUB.C | Cust. Rd 02 | Sew |
| B5.33 31 00.01.29 |  | Embedment & Test (9.95% Completed) | 112d | 2026-05-04 A | 2026-09-15 A | B5.33 31 00.01.21 | 100% |  |  |  |  | Labor [6.21 h]; Foreman [3.1 h]; Plumber Helper [3.1 h]; Plumber [3.1 h]; Operator [6.21 h]; Surveyor [3.1 h]; Surveyor Helper [3.1 h]; Loader [3.19 h]; Water Tanker [3.19 h]; Dump Truck [3.19 h]; Plate Compactor [3.19 h]; Roller Compactor [3.19 h]; Sew Dia. 200mm Depth: 3.51m - 4.5m [8.32] | 3,821.31 | 3,821.31 | 0.00797337574002583 | Cons. | Z3 | Sew | Cons | CS.UNSC | GRPs | SUB.C | Cust. Rd 02 | Sew |
| B5.33 31 00.01.37 |  | Backfilling & Warrning Tape | 3d | 2026-08-15 A | 2026-08-18 A | B6.33 05 39.01.1617 | 100% |  |  |  |  | Labor [70.87 h]; Foreman [35.44 h]; Operator [141.75 h]; Surveyor [35.44 h]; Surveyor Helper [35.44 h]; Loader [40 h]; Water Tanker [40 h]; Dump Truck [40 h]; Plate Compactor [40 h]; Roller Compactor [40 h]; Sew Dia. 200mm Depth: 3.51m - 4.5m [41.8] | 19,193.1 | 19,193.1 | 0.00398603291882676 | Cons. | Z3 | Sew | Cons | CS.UNSC | GRPs | SUB.C | Cust. Rd 02 | Sew |
| B5.33 31 00.01.29_R |  | Embedment & Test(Rem) | 3.67d | 2026-09-24 A | 2026-10-21 | B5.33 31 00.01.21, B5.33 31 00.01.29 | 80% | 0.73d | 2026-09-16 | 2026-09-20 | 112.59d | Labor [56.16 h]; Foreman [28.08 h]; Plumber Helper [28.08 h]; Plumber [28.08 h]; Operator [56.16 h]; Surveyor [28.08 h]; Surveyor Helper [28.08 h]; Loader [28.81 h]; Water Tanker [28.81 h]; Dump Truck [28.81 h]; Plate Compactor [28.81 h]; Roller Compactor [28.81 h]; Sew Dia. 200mm Depth: 3.51m - 4.5m [75.29] | 34,571.19 | 31,711.92 | 0.00797337574002583 | Cons. | Z3 | Sew | Cons | CS.UNSC | GRPs | SUB.C | Cust. Rd 02 | Sew |
|  | 1 | **Depth From 4.5m to 5.5m** |  | 2026-02-09 | 2026-10-21 |  |  |  |  |  |  |  |  |  |  |  |  |  |  |  |  |  |  |  |
| B5.33 31 00.01.7 |  | Excavation | 1.75d | 2026-02-09 A | 2026-02-10 A | B5.33 31 00.01.5 | 100% |  |  |  |  | Labor [28.35 h]; Foreman [14.17 h]; Operator [28.35 h]; Surveyor [14.17 h]; Surveyor Helper [14.17 h]; Excavator (With Bucket) [16 h]; Water Tanker [16 h]; Dump Truck [16 h]; Plate Compactor [16 h]; Sew Dia. 200mm Depth: 4.51m -5.5m [27.78] | 14,415.02 | 14,415.02 | 0.00414613354616581 | Cons. | Z3 | Sew | Cons | CS.UNSC | GRPs | SUB.C | Cust. Rd 02 | Sew |
| B5.33 31 00.01.15 |  | Sand Bedding | 0.5d | 2026-02-11 A | 2026-02-12 A | B5.33 31 00.01.7 | 100% |  |  |  |  | Labor [28.35 h]; Foreman [14.17 h]; Operator [56.7 h]; Surveyor [14.17 h]; Surveyor Helper [14.17 h]; Loader [16 h]; Water Tanker [16 h]; Dump Truck [16 h]; Plate Compactor [16 h]; Sew Dia. 200mm Depth: 4.51m -5.5m [6.94] | 3,602.47 | 3,602.47 | 0.00103616332820995 | Cons. | Z3 | Sew | Cons | CS.UNSC | GRPs | SUB.C | Cust. Rd 02 | Sew |
| B5.33 31 00.01.23 |  | Pipe Laying | 0.75d | 2026-02-14 A | 2026-02-14 A | B5.33 31 00.01.15 | 100% |  |  |  |  | Labor [28.35 h]; Foreman [14.17 h]; Plumber Helper [14.17 h]; Plumber [14.17 h]; Operator [14.17 h]; Surveyor [14.17 h]; Surveyor Helper [14.17 h]; Mobile Crane [16 h]; Sew Dia. 200mm Depth: 4.51m -5.5m [62.49] | 32,427.36 | 32,427.36 | 0.00932695018721553 | Cons. | Z3 | Sew | Cons | CS.UNSC | GRPs | SUB.C | Cust. Rd 02 | Sew |
| B5.33 31 00.01.31 |  | Embedment & Test (9.95% Completed) | 108d | 2026-05-09 A | 2026-09-15 A | B5.33 31 00.01.23 | 100% |  |  |  |  | Labor [6.21 h]; Foreman [3.1 h]; Plumber Helper [3.1 h]; Plumber [3.1 h]; Operator [6.21 h]; Surveyor [3.1 h]; Surveyor Helper [3.1 h]; Loader [3.19 h]; Water Tanker [3.19 h]; Dump Truck [3.19 h]; Plate Compactor [3.19 h]; Roller Compactor [3.19 h]; Sew Dia. 200mm Depth: 4.51m -5.5m [2.77] | 1,434.77 | 1,434.77 | 0.00414613354616581 | Cons. | Z3 | Sew | Cons | CS.UNSC | GRPs | SUB.C | Cust. Rd 02 | Sew |
| B5.33 31 00.01.39 |  | Backfilling & Warrning Tape (9.95% Completed) | 106d | 2026-05-11 A | 2026-09-15 A | B5.33 31 00.01.37, B5.33 31 00.01.31 FF, B5.33 31 00.01.33 SS, B5.33 31 00.01.35 SS | 100% |  |  |  |  | Labor [7.76 h]; Foreman [3.88 h]; Operator [15.52 h]; Surveyor [3.88 h]; Surveyor Helper [3.88 h]; Loader [3.98 h]; Water Tanker [3.98 h]; Dump Truck [3.98 h]; Plate Compactor [3.98 h]; Roller Compactor [3.98 h]; Sew Dia. 200mm Depth: 4.51m -5.5m [1.38] | 717.13 | 717.13 | 0.00207232665641989 | Cons. | Z3 | Sew | Cons | CS.UNSC | GRPs | SUB.C | Cust. Rd 02 | Sew |
| B5.33 31 00.01.31_R |  | Embedment & Test(Rem) | 3.67d | 2026-09-26 A | 2026-10-21 | B5.33 31 00.01.23, B5.33 31 00.01.31 | 80% | 0.73d | 2026-09-16 | 2026-09-20 | 112.59d | Labor [56.16 h]; Foreman [28.08 h]; Plumber Helper [28.08 h]; Plumber [28.08 h]; Operator [56.16 h]; Surveyor [28.08 h]; Surveyor Helper [28.08 h]; Loader [28.81 h]; Water Tanker [28.81 h]; Dump Truck [28.81 h]; Plate Compactor [28.81 h]; Roller Compactor [28.81 h]; Sew Dia. 200mm Depth: 4.51m -5.5m [25.01] | 12,980.25 | 11,842.54 | 0.00414613354616581 | Cons. | Z3 | Sew | Cons | CS.UNSC | GRPs | SUB.C | Cust. Rd 02 | Sew |
| B5.33 31 00.01.39_R |  | Backfilling & Warrning Tape(Rem) | 4.56d | 2026-09-28 A | 2026-10-12 A | B5.33 31 00.01.37, B5.33 31 00.01.31_R FF, B5.33 31 00.01.33_R SS, B5.33 31 00.01.35_R SS, B5.33 31 00.01.39 | 100% |  | 2026-09-16 | 2026-09-21 |  | Labor [70.2 h]; Foreman [35.1 h]; Operator [140.4 h]; Surveyor [35.1 h]; Surveyor Helper [35.1 h]; Loader [36.02 h]; Water Tanker [36.02 h]; Dump Truck [36.02 h]; Plate Compactor [36.02 h]; Roller Compactor [36.02 h]; Sew Dia. 200mm Depth: 4.51m -5.5m [12.5] | 6,487.81 | 6,487.81 | 0.00207232665641989 | Cons. | Z3 | Sew | Cons | CS.UNSC | GRPs | SUB.C | Cust. Rd 02 | Sew |

| ID | WBS | Activity | Duration | Start | Finish | Predecessors | Complete | Remaining | Planned start | Planned finish | Total float | Free float | Resources | Cost | Actual cost | Weight % | DMM2 Weekly Progress | DMM2 Zones | Networks & Stations | DMM2 Phases | UNASCO | Networks Components | Subcontractors works | Dmm2 Roads | Yellow Sheet |
| --- | --- | --- | --- | --- | --- | --- | --- | --- | --- | --- | --- | --- | --- | --- | --- | --- | --- | --- | --- | --- | --- | --- | --- | --- | --- |
|  | Manholes | **Manholes ?1200** |  | 2026-02-10 | 2026-10-27 |  |  |  |  |  |  |  |  |  |  |  |  |  |  |  |  |  |  |  |  |
|  | 2 | **Depth From 0.0m to 1.5m** |  | 2026-02-14 | 2026-10-24 |  |  |  |  |  |  |  |  |  |  |  |  |  |  |  |  |  |  |  |  |
| B6.33 05 39.01.827 |  | Excavation & Compaction | 0.5d | 2026-02-14 A | 2026-02-15 A | B5.33 31 00.01.7 | 100% |  |  |  |  |  | Labor [28.35 h]; Foreman [14.17 h]; Operator [28.35 h]; Surveyor [14.17 h]; Surveyor Helper [14.17 h]; Excavator (With Bucket) [16 h]; Water Tanker [16 h]; Dump Truck [16 h]; Plate Compactor [16 h]; MH depth 0 - 1.5m [0.42] | 3,756.4 | 3,756.4 | 0.00071742015752524 | Cons. | Z3 | Sew | Cons | CS.UNSC | Manhole | SUB.C | Cust. Rd 02 | Sew |
| B6.33 05 39.01.837 |  | Blinding Conc, & RC Base (36.00% Completed) | 40d | 2026-08-01 A | 2026-09-15 A | B6.33 05 39.01.827 | 100% |  |  |  |  |  | Labor [16.84 h]; Foreman [8.42 h]; Laboratory Officer [8.42 h]; Carpenter [8.42 h]; Steelfixer [8.42 h]; Mason [8.42 h]; MH depth 0 - 1.5m [0.1] | 869.34 | 869.34 | 0.0004611986726948 | Cons. | Z3 | Sew | Cons | CS.UNSC | Manhole | SUB.C | Cust. Rd 02 | Sew |
| B6.33 05 39.01.847 |  | Manhole Installation (36.00% Completed) | 38d | 2026-08-03 A | 2026-09-15 A | B6.33 05 39.01.837 SS | 100% |  |  |  |  |  | Labor [11.23 h]; Operator [11.23 h]; Surveyor [5.61 h]; Surveyor Helper [5.61 h]; Boom Truck [5.76 h]; Mobile Crane [5.76 h]; MH depth 0 - 1.5m [0.48] | 4,332.89 | 4,332.89 | 0.00212664377410211 | Cons. | Z3 | Sew | Cons | CS.UNSC | Manhole | SUB.C | Cust. Rd 02 | Sew |
| B6.33 05 39.01.857 |  | Test, Internal Finishing, Benching & Cover (36.00% Completed) | 37d | 2026-08-04 A | 2026-09-15 A | B6.33 05 39.01.847 SS | 100% |  |  |  |  |  | Labor [22.45 h]; Foreman [11.23 h]; Plumber Helper [11.23 h]; Plumber [11.23 h]; Mason [11.23 h]; MH depth 0 - 1.5m [0.1] | 869.34 | 869.34 | 0.0004611986726948 | Cons. | Z3 | Sew | Cons | CS.UNSC | Manhole | SUB.C | Cust. Rd 02 | Sew |
| B6.33 05 39.01.867 |  | Backfilling | 5d | 2026-09-19 A | 2026-10-24 | B6.33 05 39.01.857_R, B6.33 05 39.01.1417 | 40% | 3d | 2026-09-19 | 2026-09-26 | 110.32d | 0d | Labor [77.96 h]; Foreman [38.98 h]; Operator [77.96 h]; Surveyor [38.98 h]; Surveyor Helper [38.98 h]; Loader [40 h]; Water Tanker [40 h]; Dump Truck [40 h]; Plate Compactor [40 h]; MH depth 0 - 1.5m [0.55] | 4,963.82 | 3,720.98 | 0.000948019493872638 | Cons. | Z3 | Sew | Cons | CS.UNSC | Manhole | SUB.C | Cust. Rd 02 | Sew |
| B6.33 05 39.01.837_R |  | Blinding Conc, & RC Base(Rem) | 2.04d | 2026-09-22 A | 2026-10-22 | B6.33 05 39.01.827, B6.33 05 39.01.837 | 40% | 1.22d | 2026-09-16 | 2026-09-19 | 112.1d |  | Labor [29.94 h]; Foreman [14.97 h]; Laboratory Officer [14.97 h]; Carpenter [14.97 h]; Steelfixer [14.97 h]; Mason [14.97 h]; MH depth 0 - 1.5m [0.17] | 1,545.49 | 1,348.85 | 0.0004611986726948 | Cons. | Z3 | Sew | Cons | CS.UNSC | Manhole | SUB.C | Cust. Rd 02 | Sew |
| B6.33 05 39.01.847_R |  | Manhole Installation(Rem) | 1.52d | 2026-10-03 A | 2026-10-21 | B6.33 05 39.01.837_R SS, B6.33 05 39.01.847 | 40% | 0.91d | 2026-09-16 | 2026-09-17 | 112.41d |  | Labor [19.96 h]; Operator [19.96 h]; Surveyor [9.98 h]; Surveyor Helper [9.98 h]; Boom Truck [10.24 h]; Mobile Crane [10.24 h]; MH depth 0 - 1.5m [0.86] | 7,702.91 | 6,414.68 | 0.00212664377410211 | Cons. | Z3 | Sew | Cons | CS.UNSC | Manhole | SUB.C | Cust. Rd 02 | Sew |
| B6.33 05 39.01.857_R |  | Test, Internal Finishing, Benching & Cover(Rem) | 2.56d | 2026-10-04 A | 2026-10-22 | B6.33 05 39.01.847_R SS, B6.33 05 39.01.857 | 40% | 1.54d | 2026-09-16 | 2026-09-19 | 111.79d |  | Labor [39.92 h]; Foreman [19.96 h]; Plumber Helper [19.96 h]; Plumber [19.96 h]; Mason [19.96 h]; MH depth 0 - 1.5m [0.17] | 1,545.49 | 1,109.15 | 0.0004611986726948 | Cons. | Z3 | Sew | Cons | CS.UNSC | Manhole | SUB.C | Cust. Rd 02 | Sew |
|  | 3 | **Depth From 1.5m to 2.5m** |  | 2026-02-10 | 2026-10-24 |  |  |  |  |  |  |  |  |  |  |  |  |  |  |  |  |  |  |  |  |
| B6.33 05 39.01.877 |  | Excavation & Compaction | 0.75d | 2026-02-10 A | 2026-02-10 A | B6.33 05 39.01.827 | 100% |  |  |  |  |  | Labor [28.35 h]; Foreman [14.17 h]; Operator [28.35 h]; Surveyor [14.17 h]; Surveyor Helper [14.17 h]; Excavator (With Bucket) [16 h]; Water Tanker [16 h]; Dump Truck [16 h]; Plate Compactor [16 h]; MH depth 1.51 - 2.5m [0.67] | 8,553.04 | 8,553.04 | 0.00163451626522375 | Cons. | Z3 | Sew | Cons | CS.UNSC | Manhole | SUB.C | Cust. Rd 02 | Sew |
| B6.33 05 39.01.887 |  | Blinding Conc, & RC Base (36.00% Completed) | 24d | 2026-08-19 A | 2026-09-15 A | B6.33 05 39.01.877 | 100% |  |  |  |  |  | Labor [16.84 h]; Foreman [8.42 h]; Laboratory Officer [8.42 h]; Carpenter [8.42 h]; Steelfixer [8.42 h]; Mason [8.42 h]; MH depth 1.51 - 2.5m [0.16] | 2,052.69 | 2,052.69 | 0.00108965546636573 | Cons. | Z3 | Sew | Cons | CS.UNSC | Manhole | SUB.C | Cust. Rd 02 | Sew |
| B6.33 05 39.01.897 |  | Manhole Installation (36.00% Completed) | 21d | 2026-08-23 A | 2026-09-15 A | B6.33 05 39.01.887 SS | 100% |  |  |  |  |  | Labor [11.23 h]; Operator [11.23 h]; Surveyor [5.61 h]; Surveyor Helper [5.61 h]; Boom Truck [5.76 h]; Mobile Crane [5.76 h]; MH depth 1.51 - 2.5m [0.71] | 9,100.28 | 9,100.28 | 0.00483081828096108 | Cons. | Z3 | Sew | Cons | CS.UNSC | Manhole | SUB.C | Cust. Rd 02 | Sew |
| B6.33 05 39.01.917 |  | Backfilling (36.00% Completed) | 20d | 2026-08-24 A | 2026-09-15 A | B6.33 05 39.01.897 | 100% |  |  |  |  |  | Labor [28.07 h]; Foreman [14.03 h]; Operator [28.07 h]; Surveyor [14.03 h]; Surveyor Helper [14.03 h]; Loader [14.4 h]; Water Tanker [14.4 h]; Dump Truck [14.4 h]; Plate Compactor [14.4 h]; MH depth 1.51 - 2.5m [0.32] | 4,036.97 | 4,036.97 | 0.0021429945757647 | Cons. | Z3 | Sew | Cons | CS.UNSC | Manhole | SUB.C | Cust. Rd 02 | Sew |
| B6.33 05 39.01.907 |  | Test, Internal Finishing, Benching & Cover | 4d | 2026-09-17 A | 2026-10-24 | B6.33 05 39.01.897_R | 40% | 2.4d | 2026-09-17 | 2026-09-22 | 110.92d | 0.6d | Labor [62.37 h]; Foreman [31.18 h]; Plumber Helper [31.18 h]; Plumber [31.18 h]; Mason [31.18 h]; MH depth 1.51 - 2.5m [0.55] | 7,003.02 | 5,596.04 | 0.00108965546636573 | Cons. | Z3 | Sew | Cons | CS.UNSC | Manhole | SUB.C | Cust. Rd 02 | Sew |
| B6.33 05 39.01.917_R |  | Backfilling(Rem) | 3.2d | 2026-09-21 A | 2026-10-24 | B6.33 05 39.01.907 FF, B6.33 05 39.01.867 FF, B6.33 05 39.01.917 | 40% | 1.92d | 2026-09-21 | 2026-09-26 | 110.32d |  | Labor [49.9 h]; Foreman [24.95 h]; Operator [49.9 h]; Surveyor [24.95 h]; Surveyor Helper [24.95 h]; Loader [25.6 h]; Water Tanker [25.6 h]; Dump Truck [25.6 h]; Plate Compactor [25.6 h]; MH depth 1.51 - 2.5m [0.56] | 7,176.83 | 5,835.85 | 0.0021429945757647 | Cons. | Z3 | Sew | Cons | CS.UNSC | Manhole | SUB.C | Cust. Rd 02 | Sew |
| B6.33 05 39.01.887_R |  | Blinding Conc, & RC Base(Rem) | 2.04d | 2026-09-28 A | 2026-10-22 | B6.33 05 39.01.877, B6.33 05 39.01.887 | 40% | 1.22d | 2026-09-16 | 2026-09-19 | 112.1d |  | Labor [29.94 h]; Foreman [14.97 h]; Laboratory Officer [14.97 h]; Carpenter [14.97 h]; Steelfixer [14.97 h]; Mason [14.97 h]; MH depth 1.51 - 2.5m [0.29] | 3,649.23 | 3,062.91 | 0.00108965546636573 | Cons. | Z3 | Sew | Cons | CS.UNSC | Manhole | SUB.C | Cust. Rd 02 | Sew |
| B6.33 05 39.01.897_R |  | Manhole Installation(Rem) | 1.52d | 2026-09-30 A | 2026-10-21 | B6.33 05 39.01.887_R SS, B6.33 05 39.01.897 | 40% | 0.91d | 2026-09-16 | 2026-09-17 | 112.41d |  | Labor [19.96 h]; Operator [19.96 h]; Surveyor [9.98 h]; Surveyor Helper [9.98 h]; Boom Truck [10.24 h]; Mobile Crane [10.24 h]; MH depth 1.51 - 2.5m [1.27] | 16,178.27 | 13,891.7 | 0.00483081828096108 | Cons. | Z3 | Sew | Cons | CS.UNSC | Manhole | SUB.C | Cust. Rd 02 | Sew |
|  | 4 | **Depth From 2.5m to 3.5m** |  | 2026-02-11 | 2026-10-24 |  |  |  |  |  |  |  |  |  |  |  |  |  |  |  |  |  |  |  |  |
| B6.33 05 39.01.927 |  | Excavation & Compaction | 0.75d | 2026-02-11 A | 2026-02-11 A | B6.33 05 39.01.877 | 100% |  |  |  |  |  | Labor [28.35 h]; Foreman [14.17 h]; Operator [28.35 h]; Surveyor [14.17 h]; Surveyor Helper [14.17 h]; Excavator (With Bucket) [16 h]; Water Tanker [16 h]; Dump Truck [16 h]; Plate Compactor [16 h]; MH depth 2.51 - 3.5m [0.82] | 12,557.47 | 12,557.47 | 0.00239967188397841 | Cons. | Z3 | Sew | Cons | CS.UNSC | Manhole | SUB.C | Cust. Rd 02 | Sew |
| B6.33 05 39.01.937 |  | Blinding Conc, & RC Base (36.00% Completed) | 24d | 2026-08-19 A | 2026-09-15 A | B6.33 05 39.01.927 | 100% |  |  |  |  |  | Labor [16.84 h]; Foreman [8.42 h]; Laboratory Officer [8.42 h]; Carpenter [8.42 h]; Steelfixer [8.42 h]; Mason [8.42 h]; MH depth 2.51 - 3.5m [0.2] | 3,041.18 | 3,041.18 | 0.00161432058487404 | Cons. | Z3 | Sew | Cons | CS.UNSC | Manhole | SUB.C | Cust. Rd 02 | Sew |
| B6.33 05 39.01.947 |  | Manhole Installation (36.00% Completed) | 23d | 2026-08-20 A | 2026-09-15 A | B6.33 05 39.01.937 SS | 100% |  |  |  |  |  | Labor [11.23 h]; Operator [11.23 h]; Surveyor [5.61 h]; Surveyor Helper [5.61 h]; Boom Truck [5.76 h]; Mobile Crane [5.76 h]; MH depth 2.51 - 3.5m [0.89] | 13,644.26 | 13,644.26 | 0.00724264604982577 | Cons. | Z3 | Sew | Cons | CS.UNSC | Manhole | SUB.C | Cust. Rd 02 | Sew |
| B6.33 05 39.01.967 |  | Backfilling (36.00% Completed) | 21d | 2026-08-23 A | 2026-09-15 A | B6.33 05 39.01.947 | 100% |  |  |  |  |  | Labor [28.07 h]; Foreman [14.03 h]; Operator [28.07 h]; Surveyor [14.03 h]; Surveyor Helper [14.03 h]; Loader [14.4 h]; Water Tanker [14.4 h]; Dump Truck [14.4 h]; Plate Compactor [14.4 h]; MH depth 2.51 - 3.5m [0.4] | 6,082.38 | 6,082.38 | 0.00322864944389824 | Cons. | Z3 | Sew | Cons | CS.UNSC | Manhole | SUB.C | Cust. Rd 02 | Sew |
| B6.33 05 39.01.957 |  | Test, Internal Finishing, Benching & Cover | 4d | 2026-09-17 A | 2026-10-24 | B6.33 05 39.01.947_R | 40% | 2.4d | 2026-09-17 | 2026-09-22 | 110.92d | 0d | Labor [62.37 h]; Foreman [31.18 h]; Plumber Helper [31.18 h]; Plumber [31.18 h]; Mason [31.18 h]; MH depth 2.51 - 3.5m [0.55] | 8,447.73 | 6,750.49 | 0.00161432058487404 | Cons. | Z3 | Sew | Cons | CS.UNSC | Manhole | SUB.C | Cust. Rd 02 | Sew |
| B6.33 05 39.01.967_R |  | Backfilling(Rem) | 3.2d | 2026-09-19 A | 2026-10-24 | B6.33 05 39.01.957 FF, B6.33 05 39.01.967 | 40% | 1.92d | 2026-09-19 | 2026-09-22 | 110.92d |  | Labor [49.9 h]; Foreman [24.95 h]; Operator [49.9 h]; Surveyor [24.95 h]; Surveyor Helper [24.95 h]; Loader [25.6 h]; Water Tanker [25.6 h]; Dump Truck [25.6 h]; Plate Compactor [25.6 h]; MH depth 2.51 - 3.5m [0.71] | 10,813.13 | 8,975.05 | 0.00322864944389824 | Cons. | Z3 | Sew | Cons | CS.UNSC | Manhole | SUB.C | Cust. Rd 02 | Sew |
| B6.33 05 39.01.937_R |  | Blinding Conc, & RC Base(Rem) | 2.04d | 2026-09-21 A | 2026-10-22 | B6.33 05 39.01.927, B6.33 05 39.01.937 | 40% | 1.22d | 2026-09-16 | 2026-09-19 | 112.1d |  | Labor [29.94 h]; Foreman [14.97 h]; Laboratory Officer [14.97 h]; Carpenter [14.97 h]; Steelfixer [14.97 h]; Mason [14.97 h]; MH depth 2.51 - 3.5m [0.35] | 5,406.55 | 4,752.66 | 0.00161432058487404 | Cons. | Z3 | Sew | Cons | CS.UNSC | Manhole | SUB.C | Cust. Rd 02 | Sew |
| B6.33 05 39.01.947_R |  | Manhole Installation(Rem) | 1.52d | 2026-09-24 A | 2026-10-21 | B6.33 05 39.01.937_R SS, B6.33 05 39.01.947 | 40% | 0.91d | 2026-09-16 | 2026-09-17 | 112.41d |  | Labor [19.96 h]; Operator [19.96 h]; Surveyor [9.98 h]; Surveyor Helper [9.98 h]; Boom Truck [10.24 h]; Mobile Crane [10.24 h]; MH depth 2.51 - 3.5m [1.59] | 24,256.47 | 21,785.12 | 0.00724264604982577 | Cons. | Z3 | Sew | Cons | CS.UNSC | Manhole | SUB.C | Cust. Rd 02 | Sew |

| ID | WBS | Activity | Duration | Start | Finish | Predecessors | Complete | Remaining | Planned start | Planned finish | Total float | Free float | Resources | Cost | Actual cost | Weight % | DMM2 Weekly Progress | DMM2 Zones | Networks & Stations | DMM2 Phases | UNASCO | Networks Components | Subcontractors works | Dmm2 Roads | Yellow Sheet |
| --- | --- | --- | --- | --- | --- | --- | --- | --- | --- | --- | --- | --- | --- | --- | --- | --- | --- | --- | --- | --- | --- | --- | --- | --- | --- |
|  | 1 | **Depth From 4.5m to 5.5m** |  | 2026-02-12 | 2026-10-27 |  |  |  |  |  |  |  |  |  |  |  |  |  |  |  |  |  |  |  |  |
| B6.33 05 39.01.977 |  | Excavation & Compaction | 0.5d | 2026-02-15 A | 2026-02-16 A | B6.33 05 39.01.927 | 100% |  |  |  |  |  | Labor [28.35 h]; Foreman [14.17 h]; Operator [28.35 h]; Surveyor [14.17 h]; Surveyor Helper [14.17 h]; Excavator (With Bucket) [16 h]; Water Tanker [16 h]; Dump Truck [16 h]; Plate Compactor [16 h]; MH depth 4.51 -5.5m [1.42] | 43,831.91 | 43,831.91 | 0.008371151633112 | Cons. | Z3 | Sew | Cons | CS.UNSC | Manhole | SUB.C | Cust. Rd 02 | Sew |
| B6.33 05 39.01.987 |  | Blinding Conc, & RC Base (36.00% Completed) | 39d | 2026-08-02 A | 2026-09-15 A | B6.33 05 39.01.977 | 100% |  |  |  |  |  | Labor [16.84 h]; Foreman [8.42 h]; Laboratory Officer [8.42 h]; Carpenter [8.42 h]; Steelfixer [8.42 h]; Mason [8.42 h]; MH depth 4.51 -5.5m [0.34] | 10,630.39 | 10,630.39 | 0.00563951267914914 | Cons. | Z3 | Sew | Cons | CS.UNSC | Manhole | SUB.C | Cust. Rd 02 | Sew |
| B6.33 05 39.01.997 |  | Manhole Installation (36.00% Completed) | 37d | 2026-08-04 A | 2026-09-15 A | B6.33 05 39.01.987 SS | 100% |  |  |  |  |  | Labor [11.23 h]; Operator [11.23 h]; Surveyor [5.61 h]; Surveyor Helper [5.61 h]; Boom Truck [5.76 h]; Mobile Crane [5.76 h]; MH depth 4.51 -5.5m [1.54] | 47,504.57 | 47,504.57 | 0.0252015722849475 | Cons. | Z3 | Sew | Cons | CS.UNSC | Manhole | SUB.C | Cust. Rd 02 | Sew |
| B6.33 05 39.01.1007 |  | Test, Internal Finishing, Benching & Cover (36.00% Completed) | 34d | 2026-08-08 A | 2026-09-15 A | B6.33 05 39.01.997 SS | 100% |  |  |  |  |  | Labor [22.45 h]; Foreman [11.23 h]; Plumber Helper [11.23 h]; Plumber [11.23 h]; Mason [11.23 h]; MH depth 4.51 -5.5m [0.34] | 10,630.39 | 10,630.39 | 0.00563951267914914 | Cons. | Z3 | Sew | Cons | CS.UNSC | Manhole | SUB.C | Cust. Rd 02 | Sew |
| B6.33 05 39.01.987_R |  | Blinding Conc, & RC Base(Rem) | 2.04d | 2026-09-24 A | 2026-10-22 | B6.33 05 39.01.977, B6.33 05 39.01.987 | 40% | 1.22d | 2026-09-16 | 2026-09-19 | 112.1d |  | Labor [29.94 h]; Foreman [14.97 h]; Laboratory Officer [14.97 h]; Carpenter [14.97 h]; Steelfixer [14.97 h]; Mason [14.97 h]; MH depth 4.51 -5.5m [0.61] | 18,898.48 | 16,214.7 | 0.00563951267914914 | Cons. | Z3 | Sew | Cons | CS.UNSC | Manhole | SUB.C | Cust. Rd 02 | Sew |
| B6.33 05 39.01.997_R |  | Manhole Installation(Rem) | 1.52d | 2026-09-26 A | 2026-10-21 | B6.33 05 39.01.987_R SS, B6.33 05 39.01.997 | 40% | 0.91d | 2026-09-16 | 2026-09-17 | 112.41d |  | Labor [19.96 h]; Operator [19.96 h]; Surveyor [9.98 h]; Surveyor Helper [9.98 h]; Boom Truck [10.24 h]; Mobile Crane [10.24 h]; MH depth 4.51 -5.5m [2.73] | 84,452.56 | 75,339.43 | 0.0252015722849475 | Cons. | Z3 | Sew | Cons | CS.UNSC | Manhole | SUB.C | Cust. Rd 02 | Sew |
| B6.33 05 39.01.1007_R |  | Test, Internal Finishing, Benching & Cover(Rem) | 2.56d | 2026-09-29 A | 2026-10-22 | B6.33 05 39.01.997_R SS, B6.33 05 39.01.1007 | 40% | 1.54d | 2026-09-16 | 2026-09-19 | 111.79d |  | Labor [39.92 h]; Foreman [19.96 h]; Plumber Helper [19.96 h]; Plumber [19.96 h]; Mason [19.96 h]; MH depth 4.51 -5.5m [0.61] | 18,898.48 | 14,927.17 | 0.00563951267914914 | Cons. | Z3 | Sew | Cons | CS.UNSC | Manhole | SUB.C | Cust. Rd 02 | Sew |
| B6.33 05 39.01.1017 |  | Backfilling | 5d | 2026-10-05 A | 2026-10-24 | B6.33 05 39.01.1007_R, B6.33 05 39.01.967_R, B6.33 05 39.01.1767, DMM2-Proc-Delv-4048 | 40% | 3d | 2026-10-05 | 2026-10-10 | 110.32d | 36.23d | Labor [77.96 h]; Foreman [38.98 h]; Operator [77.96 h]; Surveyor [38.98 h]; Surveyor Helper [38.98 h]; Loader [40 h]; Water Tanker [40 h]; Dump Truck [40 h]; Plate Compactor [40 h]; MH depth 4.51 -5.5m [1.9] | 58,596.35 | 30,363.56 | 0.0111909079726865 | Cons. | Z3 | Sew | Cons | CS.UNSC | Manhole | SUB.C | Cust. Rd 02 | Sew |
|  | 5 | **Depth From 4.5m to 5.5m with back drop** |  | 2026-02-12 | 2026-10-27 |  |  |  |  |  |  |  |  |  |  |  |  |  |  |  |  |  |  |  |  |
| B6.33 05 39.01.4307 |  | Excavation & Compaction | 0.75d | 2026-02-12 A | 2026-02-12 A | B6.33 05 39.01.977 | 100% |  |  |  |  |  | Labor [28.35 h]; Foreman [14.17 h]; Operator [28.35 h]; Surveyor [14.17 h]; Surveyor Helper [14.17 h]; Excavator (With Bucket) [16 h]; Water Tanker [16 h]; Dump Truck [16 h]; Plate Compactor [16 h]; MH depth 4.51-5.5 m with back drop [0.3] | 10,552.9 | 10,552.9 | 0.0020090471670363 | Cons. | Z3 | Sew | Cons | CS.UNSC | Manhole | SUB.C | Cust. Rd 02 | Sew |
| B6.33 05 39.01.4277 |  | Blinding Conc, & RC Base | 3d | 2026-09-20 A | 2026-10-22 | B6.33 05 39.01.4307, B3.33 14 19.01.43 | 40% | 1.8d | 2026-09-20 | 2026-09-22 | 111.52d |  | Labor [46.78 h]; Foreman [23.39 h]; Laboratory Officer [23.39 h]; Carpenter [23.39 h]; Steelfixer [23.39 h]; Mason [23.39 h]; MH depth 4.51-5.5 m with back drop [0.19] | 6,859.38 | 5,726.64 | 0.0013058806585736 | Cons. | Z3 | Sew | Cons | CS.UNSC | Manhole | SUB.C | Cust. Rd 02 | Sew |
| B6.33 05 39.01.4287 |  | Manhole Installation | 2d | 2026-09-24 A | 2026-10-22 | B6.33 05 39.01.4277 | 40% | 1.2d | 2026-09-24 | 2026-09-26 | 112.12d |  | Labor [31.18 h]; Operator [31.18 h]; Surveyor [15.59 h]; Surveyor Helper [15.59 h]; Boom Truck [16 h]; Mobile Crane [16 h]; MH depth 4.51-5.5 m with back drop [0.9] | 31,658.78 | 27,483.99 | 0.00602715694707244 | Cons. | Z3 | Sew | Cons | CS.UNSC | Manhole | SUB.C | Cust. Rd 02 | Sew |
| B6.33 05 39.01.4297 |  | Test, Internal Finishing, Benching & Cover | 5d | 2026-09-27 A | 2026-10-24 | B6.33 05 39.01.4287 | 40% | 3d | 2026-09-27 | 2026-10-01 | 110.32d |  | Labor [62.37 h]; Foreman [31.18 h]; Plumber Helper [31.18 h]; Plumber [31.18 h]; Mason [31.18 h]; MH depth 4.51-5.5 m with back drop [0.19] | 6,859.38 | 4,664.38 | 0.0013058806585736 | Cons. | Z3 | Sew | Cons | CS.UNSC | Manhole | SUB.C | Cust. Rd 02 | Sew |
| B6.33 05 39.01.4317 |  | Backfilling | 10d | 2026-10-03 A | 2026-10-27 | B6.33 05 39.01.4297, B6.33 05 39.01.917_R | 40% | 6d | 2026-10-03 | 2026-10-13 | 107.32d | 22d | Labor [77.96 h]; Foreman [38.98 h]; Operator [77.96 h]; Surveyor [38.98 h]; Surveyor Helper [38.98 h]; Loader [40 h]; Water Tanker [40 h]; Dump Truck [40 h]; Plate Compactor [40 h]; MH depth 4.51-5.5 m with back drop [0.4] | 14,246.41 | 5,484.87 | 0.00271221367549899 | Cons. | Z3 | Sew | Cons | CS.UNSC | Manhole | SUB.C | Cust. Rd 02 | Sew |
|  | 2 | **Valves & Chambers** |  | 2026-10-21 | 2026-11-09 |  |  |  |  |  |  |  |  |  |  |  |  |  |  |  |  |  |  |  |  |
|  | Gate | **Gate Valves** |  | 2026-10-21 | 2026-10-25 |  |  |  |  |  |  |  |  |  |  |  |  |  |  |  |  |  |  |  |  |
| B3.33 14 19.01.93 |  | Burried Isolation Valve Installation | 2d | 2026-10-21 | 2026-10-22 | B5.33 31 00.01.23 |  |  |  |  | 109.32d | 0d | Labor [31.18 h]; Plumber Helper [15.59 h]; Plumber [15.59 h]; Operator [31.18 h]; Boom Truck [16 h]; Gate V dia 150 mm on Dia. 160 mm [0.75] | 2,334.05 |  | 0.000445320593853839 | Cons. | Z3 | Sew | Cons | CS.UNSC |  | SUB.C | Cust. Rd 02 | Sew |
| B3.33 14 19.01.103 |  | Spindle & Surface Box | 2d | 2026-10-24 | 2026-10-25 | B3.33 14 19.01.93 |  |  |  |  | 109.32d |  | Labor [31.18 h]; Foreman [15.59 h]; Plumber Helper [15.59 h]; Plumber [15.59 h]; Operator [31.18 h]; JCB [16 h]; Gate V dia 150 mm on Dia. 160 mm [0.25] | 793.57 |  | 0.000151408613890224 | Cons. | Z3 | Sew | Cons | CS.UNSC |  | SUB.C | Cust. Rd 02 | Sew |
|  | Washout V in Ch | **Washout Valves in Chambers** |  | 2026-10-21 | 2026-11-09 |  |  |  |  |  |  |  |  |  |  |  |  |  |  |  |  |  |  |  |  |
| B3.33 14 19.01.43 |  | Land Adjustment & Compaction | 3d | 2026-10-21 | 2026-10-24 | B6.33 05 39.01.977 |  |  |  |  | 96.32d | 0d | Labor [31.18 h]; Foreman [15.59 h]; Operator [62.37 h]; Surveyor [15.59 h]; Surveyor Helper [15.59 h]; Excavator (With Bucket) [16 h]; Water Tanker [16 h]; Dump Truck [16 h]; Plate Compactor [16 h]; Wash out chamber; on 160 mm dia pipeline [0.15] | 3,773.53 |  | 0.000715792161776073 | Cons. | Z3 | Sew | Cons | CS.UNSC |  | SUB.C | Cust. Rd 02 | Sew |
| B3.33 14 19.01.53 |  | Foundations | 3d | 2026-10-25 | 2026-10-27 | B3.33 14 19.01.43, B6.33 05 39.01.4307 |  |  |  |  | 96.32d | 0d | Labor [46.78 h]; Foreman [23.39 h]; Laboratory Officer [23.39 h]; Carpenter [23.39 h]; Steelfixer [23.39 h]; Mason [23.39 h]; Wash out chamber; on 160 mm dia pipeline [0.2] | 4,905.6 |  | 0.000930529810308902 | Cons. | Z3 | Sew | Cons | CS.UNSC |  | SUB.C | Cust. Rd 02 | Sew |
| B3.33 14 19.01.63 |  | Chambers Walls Conc Cast In Situ | 3d | 2026-10-28 | 2026-10-31 | B3.33 14 19.01.53 |  |  |  |  | 96.32d | 0d | Labor [46.78 h]; Foreman [23.39 h]; Laboratory Officer [23.39 h]; Carpenter [23.39 h]; Steelfixer [23.39 h]; Mason [23.39 h]; Wash out chamber; on 160 mm dia pipeline [0.47] | 11,697.96 |  | 0.00221895570150582 | Cons. | Z3 | Sew | Cons | CS.UNSC |  | SUB.C | Cust. Rd 02 | Sew |
| B3.33 14 19.01.73 |  | Chamber Curing, Finishing & Steel Cover | 4d | 2026-11-01 | 2026-11-04 | B3.33 14 19.01.63 |  |  |  |  | 96.32d | 0d | Labor [62.37 h]; Mason [31.18 h]; Wash out chamber; on 160 mm dia pipeline [0.2] | 4,905.6 |  | 0.000930529810308902 | Cons. | Z3 | Sew | Cons | CS.UNSC |  | SUB.C | Cust. Rd 02 | Sew |
| B3.33 14 19.01.83 |  | Valve & Fitting Installation | 4d | 2026-11-05 | 2026-11-09 | B3.33 14 19.01.73 |  |  |  |  | 96.32d | 11d | Labor [62.37 h]; Plumber Helper [31.18 h]; Plumber [31.18 h]; Operator [62.37 h]; Boom Truck [32 h]; Wash out valve with dia (100 ) mm on pipes with dia (160) mm [1.01] | 3,490.88 |  | 0.000662175192599917 | Cons. | Z3 | Sew | Cons | CS.UNSC |  | SUB.C | Cust. Rd 02 | Sew |

| ID | WBS | Activity | Duration | Start | Finish | Predecessors | Complete | Remaining | Planned start | Planned finish | Total float | Free float | Resources | Cost | Actual cost | Weight % | DMM2 Weekly Progress | DMM2 Zones | Networks & Stations | DMM2 Phases | UNASCO | Networks Components | Subcontractors works | Dmm2 Roads | Yellow Sheet |
| --- | --- | --- | --- | --- | --- | --- | --- | --- | --- | --- | --- | --- | --- | --- | --- | --- | --- | --- | --- | --- | --- | --- | --- | --- | --- |
|  | Stormwater Network | **Stormwater Network** |  | 2026-02-11 | 2026-10-26 |  |  |  |  |  |  |  |  |  |  |  |  |  |  |  |  |  |  |  |  |
|  | GRP | **GRP** |  | 2026-02-11 | 2026-10-25 |  |  |  |  |  |  |  |  |  |  |  |  |  |  |  |  |  |  |  |  |
|  | ?40011 | **?400** |  | 2026-02-11 | 2026-10-25 |  |  |  |  |  |  |  |  |  |  |  |  |  |  |  |  |  |  |  |  |
|  | 3 | **Depth From 1.5m to 2.5m** |  | 2026-02-11 | 2026-10-25 |  |  |  |  |  |  |  |  |  |  |  |  |  |  |  |  |  |  |  |  |
| B6.33 42 11.01-1.1 |  | Excavation | 1d | 2026-02-11 A | 2026-02-12 A | B6.33 05 39.01.3677 | 100% |  |  |  |  |  | Labor [28.35 h]; Foreman [14.17 h]; Operator [28.35 h]; Surveyor [14.17 h]; Surveyor Helper [14.17 h]; Excavator (With Bucket) [16 h]; Water Tanker [16 h]; Dump Truck [16 h]; Plate Compactor [16 h]; Depth: 1.51m - 2.5m [3.99] | 1,531.45 | 1,531.45 | 0.00310601117599926 | Cons. | Z3 | Storm | Cons | CS.UNSC | GRPs | SUB.C | Cust. Rd 02 | Strm |
| B6.33 42 11.01-1.3 |  | Sand Bedding | 1d | 2026-02-12 A | 2026-02-14 A | B6.33 42 11.01-1.1 | 100% |  |  |  |  |  | Labor [28.35 h]; Foreman [14.17 h]; Operator [56.7 h]; Surveyor [14.17 h]; Surveyor Helper [14.17 h]; Loader [16 h]; Water Tanker [16 h]; Dump Truck [16 h]; Plate Compactor [16 h]; Depth: 1.51m - 2.5m [1] | 383 | 383 | 0.000776776306783888 | Cons. | Z3 | Storm | Cons | CS.UNSC | GRPs | SUB.C | Cust. Rd 02 | Strm |
| B6.33 42 11.01-1.5 |  | Pipe Laying | 1d | 2026-02-15 A | 2026-02-16 A | B6.33 42 11.01-1.3 | 100% |  |  |  |  |  | Labor [28.35 h]; Foreman [14.17 h]; Plumber Helper [14.17 h]; Plumber [14.17 h]; Operator [14.17 h]; Surveyor [14.17 h]; Surveyor Helper [14.17 h]; Mobile Crane [16 h]; Depth: 1.51m - 2.5m [8.98] | 3,445.9 | 3,445.9 | 0.00698879865878235 | Cons. | Z3 | Storm | Cons | CS.UNSC | GRPs | SUB.C | Cust. Rd 02 | Strm |
| B6.33 42 11.01-1.7 |  | Embedment & Test (47.25% Completed) | 114d | 2026-05-02 A | 2026-09-15 A | B6.33 42 11.01-1.5 | 100% |  |  |  |  |  | Labor [29.47 h]; Foreman [14.73 h]; Plumber Helper [14.73 h]; Plumber [14.73 h]; Operator [29.47 h]; Surveyor [14.73 h]; Surveyor Helper [14.73 h]; Loader [15.12 h]; Water Tanker [15.12 h]; Dump Truck [15.12 h]; Plate Compactor [15.12 h]; Roller Compactor [15.12 h]; Depth: 1.51m - 2.5m [1.89] | 723.56 | 723.56 | 0.00310601117599926 | Cons. | Z3 | Storm | Cons | CS.UNSC | GRPs | SUB.C | Cust. Rd 02 | Strm |
| B6.33 42 11.01-1.9 |  | Backfilling & Warrning Tape (47.25% Completed) | 111d | 2026-05-05 A | 2026-09-15 A | B6.33 42 11.01-1.7 FF | 100% |  |  |  |  |  | Labor [36.83 h]; Foreman [18.42 h]; Operator [73.67 h]; Surveyor [18.42 h]; Surveyor Helper [18.42 h]; Loader [18.9 h]; Water Tanker [18.9 h]; Dump Truck [18.9 h]; Plate Compactor [18.9 h]; Roller Compactor [18.9 h]; Depth: 1.51m - 2.5m [0.94] | 361.91 | 361.91 | 0.00155355261356778 | Cons. | Z3 | Storm | Cons | CS.UNSC | GRPs | SUB.C | Cust. Rd 02 | Strm |
| B6.33 42 11.01-1.7_R |  | Embedment & Test(Rem) | 3.56d | 2026-10-21 | 2026-10-25 | B6.33 42 11.01-1.5, B6.33 42 11.01-1.7 |  |  |  |  | 109.76d | 0.28d | Labor [32.9 h]; Foreman [16.45 h]; Plumber Helper [16.45 h]; Plumber [16.45 h]; Operator [32.9 h]; Surveyor [16.45 h]; Surveyor Helper [16.45 h]; Loader [16.88 h]; Water Tanker [16.88 h]; Dump Truck [16.88 h]; Plate Compactor [16.88 h]; Roller Compactor [16.88 h]; Depth: 1.51m - 2.5m [2.11] | 807.9 |  | 0.00310601117599926 | Cons. | Z3 | Storm | Cons | CS.UNSC | GRPs | SUB.C | Cust. Rd 02 | Strm |
| B6.33 42 11.01-1.9_R |  | Backfilling & Warrning Tape(Rem) | 3.84d | 2026-10-21 | 2026-10-25 | B6.33 42 11.01-1.7_R FF, B6.33 42 11.01-1.9 |  |  |  |  | 109.48d |  | Labor [41.13 h]; Foreman [20.56 h]; Operator [82.26 h]; Surveyor [20.56 h]; Surveyor Helper [20.56 h]; Loader [21.1 h]; Water Tanker [21.1 h]; Dump Truck [21.1 h]; Plate Compactor [21.1 h]; Roller Compactor [21.1 h]; Depth: 1.51m - 2.5m [1.05] | 404.09 |  | 0.00155355261356778 | Cons. | Z3 | Storm | Cons | CS.UNSC | GRPs | SUB.C | Cust. Rd 02 | Strm |
|  | Strom Manholes | **Manholes** |  | 2026-02-12 | 2026-10-26 |  |  |  |  |  |  |  |  |  |  |  |  |  |  |  |  |  |  |  |  |
|  | 1 | **?1200** |  | 2026-02-12 | 2026-10-26 |  |  |  |  |  |  |  |  |  |  |  |  |  |  |  |  |  |  |  |  |
|  | 3 | **Depth From 1.5m to 2.5m** |  | 2026-02-12 | 2026-10-26 |  |  |  |  |  |  |  |  |  |  |  |  |  |  |  |  |  |  |  |  |
| B6.33 05 39.01.3577 |  | Excavation & Compaction | 1d | 2026-02-12 A | 2026-02-14 A | B6.33 42 11.01-1.1 | 100% |  |  |  |  |  | Labor [28.35 h]; Foreman [14.17 h]; Operator [28.35 h]; Surveyor [14.17 h]; Surveyor Helper [14.17 h]; Excavator (With Bucket) [16 h]; Water Tanker [16 h]; Dump Truck [16 h]; Plate Compactor [16 h]; MH depth 1.50 - 2.5m [1.07] | 9,648.47 | 9,648.47 | 2.49372657086146E-005 | Cons. | Z3 | Storm | Cons | CS.UNSC | Manhole | SUB.C | Cust. Rd 02 | Strm |
| B6.33 05 39.01.3587 |  | Blinding Conc, & RC Base (83.00% Completed) | 72d | 2026-06-24 A | 2026-09-15 A | B6.33 05 39.01.3577 | 100% |  |  |  |  |  | Labor [38.82 h]; Foreman [19.41 h]; Laboratory Officer [19.41 h]; Carpenter [19.41 h]; Steelfixer [19.41 h]; Mason [19.41 h]; MH depth 1.50 - 2.5m [0.89] | 8,008.23 | 8,008.23 | 2.49372657086146E-005 | Cons. | Z3 | Storm | Cons | CS.UNSC | Manhole | SUB.C | Cust. Rd 02 | Strm |
| B6.33 05 39.01.3597 |  | Manhole Installation (83.00% Completed) | 69d | 2026-06-28 A | 2026-09-15 A | B6.33 05 39.01.3587 SS | 100% |  |  |  |  |  | Labor [25.88 h]; Operator [25.88 h]; Surveyor [12.94 h]; Surveyor Helper [12.94 h]; Boom Truck [13.28 h]; Mobile Crane [13.28 h]; MH depth 1.50 - 2.5m [3] | 26,987.14 | 26,987.14 | 7.48117971258433E-005 | Cons. | Z3 | Storm | Cons | CS.UNSC | Manhole | SUB.C | Cust. Rd 02 | Strm |
| B6.33 05 39.01.3587_R |  | Blinding Conc, & RC Base(Rem) | 3d | 2026-09-19 A | 2026-09-24 A | B6.33 05 39.01.3577, B6.33 05 39.01.3587 | 100% |  | 2026-09-16 | 2026-09-19 |  |  | Labor [7.95 h]; Foreman [3.98 h]; Laboratory Officer [3.98 h]; Carpenter [3.98 h]; Steelfixer [3.98 h]; Mason [3.98 h]; MH depth 1.50 - 2.5m [0.18] | 1,640.24 | 1,640.24 | 2.49372657086146E-005 | Cons. | Z3 | Storm | Cons | CS.UNSC | Manhole | SUB.C | Cust. Rd 02 | Strm |
| B6.33 05 39.01.3597_R |  | Manhole Installation(Rem) | 3d | 2026-09-21 A | 2026-09-27 A | B6.33 05 39.01.3587_R SS, B6.33 05 39.01.3597 | 100% |  | 2026-09-16 | 2026-09-19 |  |  | Labor [5.3 h]; Operator [5.3 h]; Surveyor [2.65 h]; Surveyor Helper [2.65 h]; Boom Truck [2.72 h]; Mobile Crane [2.72 h]; MH depth 1.50 - 2.5m [0.62] | 5,527.49 | 5,527.49 | 7.48117971258433E-005 | Cons. | Z3 | Storm | Cons | CS.UNSC | Manhole | SUB.C | Cust. Rd 02 | Strm |
| B6.33 05 39.01.3617 |  | Backfilling | 6d | 2026-10-14 A | 2026-10-17 A | B6.33 05 39.01.3607 | 100% |  | 2026-10-20 | 2026-10-26 |  |  | Labor [77.96 h]; Foreman [38.98 h]; Operator [77.96 h]; Surveyor [38.98 h]; Surveyor Helper [38.98 h]; Loader [40 h]; Water Tanker [40 h]; Dump Truck [40 h]; Plate Compactor [40 h]; MH depth 1.50 - 2.5m [2.15] | 19,296.94 | 19,296.94 | 4.98745314172292E-005 | Cons. | Z3 | Storm | Cons | CS.UNSC | Manhole | SUB.C | Cust. Rd 02 | Strm |
| B6.33 05 39.01.3607 |  | Test, Internal Finishing, Benching & Cover | 5d | 2026-10-21 | 2026-10-26 | B6.33 05 39.01.3597_R |  |  |  |  | 108.32d |  | Labor [62.37 h]; Foreman [31.18 h]; Plumber Helper [31.18 h]; Plumber [31.18 h]; Mason [31.18 h]; MH depth 1.50 - 2.5m [1.07] | 9,648.47 |  | 2.49372657086146E-005 | Cons. | Z3 | Storm | Cons | CS.UNSC | Manhole | SUB.C | Cust. Rd 02 | Strm |
|  | Catch Basins | **Catch Basins** |  | 2026-03-09 | 2026-10-24 |  |  |  |  |  |  |  |  |  |  |  |  |  |  |  |  |  |  |  |  |
|  | Sing | **Single** |  | 2026-06-24 | 2026-10-22 |  |  |  |  |  |  |  |  |  |  |  |  |  |  |  |  |  |  |  |  |
| B6.33 05 40.01.410 |  | Excavation, Compaction & Vapour Barrier (62.50% Completed) | 72d | 2026-06-24 A | 2026-09-15 A | B6.33 05 39.01.3577 | 100% |  |  |  |  |  | Labor [19.49 h]; Foreman [9.75 h]; Operator [19.49 h]; Surveyor [9.75 h]; Surveyor Helper [9.75 h]; Excavator (With Bucket) [10 h]; Water Tanker [10 h]; Dump Truck [10 h]; Roller Compactor [10 h]; Single Catch basin [1.87] | 8,449.79 | 8,449.79 | 0.00296566869933904 | Cons. | Z3 | Storm | Cons | CS.UNSC | CBs | SUB.C | Cust. Rd 02 | Strm |
| B6.33 05 40.01.420 |  | Blinding Conc. (62.50% Completed) | 70d | 2026-06-27 A | 2026-09-15 A | B6.33 05 40.01.410 SS | 100% |  |  |  |  |  | Labor [19.49 h]; Foreman [9.75 h]; Laboratory Officer [9.75 h]; Carpenter [9.75 h]; Steelfixer [9.75 h]; Mason [9.75 h]; Single Catch basin [1.24] | 5,620.95 | 5,620.95 | 0.00197281439564727 | Cons. | Z3 | Storm | Cons | CS.UNSC | CBs | SUB.C | Cust. Rd 02 | Strm |
| B6.33 05 40.01.430 |  | Catch Basin Installation (62.50% Completed) | 68d | 2026-06-29 A | 2026-09-15 A | B6.33 05 40.01.420 SS | 100% |  |  |  |  |  | Labor [29.24 h]; Foreman [14.62 h]; Carpenter [14.62 h]; Steelfixer [14.62 h]; Mason [14.62 h]; Operator [29.24 h]; Surveyor [14.62 h]; Surveyor Helper [14.62 h]; Boom Truck [15 h]; Single Catch basin [5.58] | 25,239.15 | 25,239.15 | 0.00885832346280832 | Cons. | Z3 | Storm | Cons | CS.UNSC | CBs | SUB.C | Cust. Rd 02 | Strm |
| B6.33 05 40.01.440 |  | Backfilling, DI Frame & Grate Cover Fixing (62.50% Completed) | 65d | 2026-07-02 A | 2026-09-15 A | B6.33 42 11.35-120, B6.33 05 40.01.430 SS | 100% |  |  |  |  |  | Labor [48.73 h]; Foreman [24.36 h]; Operator [48.73 h]; Surveyor [24.36 h]; Surveyor Helper [24.36 h]; Loader [25 h]; Water Tanker [25 h]; Dump Truck [25 h]; Plate Compactor [25 h]; Single Catch basin [3.72] | 16,826.1 | 16,826.1 | 0.00590554897520555 | Cons. | Z3 | Storm | Cons | CS.UNSC | CBs | SUB.C | Cust. Rd 02 | Strm |
| B6.33 05 40.01.410_R |  | Excavation, Compaction & Vapour Barrier(Rem) | 3d | 2026-10-14 A | 2026-10-22 | B6.33 05 39.01.3577, B6.33 05 40.01.410 | 61% | 1.17d | 2026-10-14 | 2026-10-17 | 112.15d |  | Labor [11.69 h]; Foreman [5.85 h]; Operator [11.69 h]; Surveyor [5.85 h]; Surveyor Helper [5.85 h]; Excavator (With Bucket) [6 h]; Water Tanker [6 h]; Dump Truck [6 h]; Roller Compactor [6 h]; Single Catch basin [1.12] | 5,069.87 | 3,092.62 | 0.00296566869933904 | Cons. | Z3 | Storm | Cons | CS.UNSC | CBs | SUB.C | Cust. Rd 02 | Strm |
| B6.33 05 40.01.420_R |  | Blinding Conc.(Rem) | 3d | 2026-10-14 A | 2026-10-22 | B6.33 05 40.01.410_R SS, B6.33 05 40.01.420 | 61% | 1.17d | 2026-10-14 | 2026-10-17 | 112.15d |  | Labor [11.69 h]; Foreman [5.85 h]; Laboratory Officer [5.85 h]; Carpenter [5.85 h]; Steelfixer [5.85 h]; Mason [5.85 h]; Single Catch basin [0.75] | 3,372.57 | 2,057.27 | 0.00197281439564727 | Cons. | Z3 | Storm | Cons | CS.UNSC | CBs | SUB.C | Cust. Rd 02 | Strm |
| B6.33 05 40.01.430_R |  | Catch Basin Installation(Rem) | 2.12d | 2026-10-14 A | 2026-10-21 | B6.33 05 40.01.420_R SS, B6.33 05 40.01.430 | 61% | 0.83d | 2026-10-14 | 2026-10-17 | 112.49d |  | Labor [17.54 h]; Foreman [8.77 h]; Carpenter [8.77 h]; Steelfixer [8.77 h]; Mason [8.77 h]; Operator [17.54 h]; Surveyor [8.77 h]; Surveyor Helper [8.77 h]; Boom Truck [9 h]; Single Catch basin [3.35] | 15,143.49 | 9,237.53 | 0.00885832346280832 | Cons. | Z3 | Storm | Cons | CS.UNSC | CBs | SUB.C | Cust. Rd 02 | Strm |
| B6.33 05 40.01.440_R |  | Backfilling, DI Frame & Grate Cover Fixing(Rem) | 2.88d | 2026-10-14 A | 2026-10-22 | B6.33 42 11.35-120, B6.33 05 40.01.430_R SS, B6.33 05 40.01.440 | 61% | 1.12d | 2026-10-14 | 2026-10-17 | 107.2d | 12.16d | Labor [29.24 h]; Foreman [14.62 h]; Operator [29.24 h]; Surveyor [14.62 h]; Surveyor Helper [14.62 h]; Loader [15 h]; Water Tanker [15 h]; Dump Truck [15 h]; Plate Compactor [15 h]; Single Catch basin [2.23] | 10,095.66 | 6,158.35 | 0.00590554897520555 | Cons. | Z3 | Storm | Cons | CS.UNSC | CBs | SUB.C | Cust. Rd 02 | Strm |

| ID | WBS | Activity | Duration | Start | Finish | Predecessors | Complete | Remaining | Planned start | Planned finish | Total float | Free float | Resources | Cost | Actual cost | Weight % | DMM2 Weekly Progress | DMM2 Zones | Networks & Stations | DMM2 Phases | UNASCO | Networks Components | Subcontractors works | Dmm2 Roads | Yellow Sheet |
| --- | --- | --- | --- | --- | --- | --- | --- | --- | --- | --- | --- | --- | --- | --- | --- | --- | --- | --- | --- | --- | --- | --- | --- | --- | --- |
|  | Dou | **Double** |  | 2026-09-03 | 2026-10-24 |  |  |  |  |  |  |  |  |  |  |  |  |  |  |  |  |  |  |  |  |
| B6.33 05 40.01.890 |  | Excavation, Compaction & Vapour Barrier (62.50% Completed) | 10.8d | 2026-09-03 A | 2026-09-15 A | B6.33 05 40.01.410 SS | 100% |  |  |  |  |  | Labor [19.49 h]; Foreman [9.75 h]; Operator [19.49 h]; Surveyor [9.75 h]; Surveyor Helper [9.75 h]; Excavator (With Bucket) [10 h]; Water Tanker [10 h]; Dump Truck [10 h]; Roller Compactor [10 h]; Double Catch basin [0.37] | 3,286.27 | 3,286.27 | 0.000879450288447266 | Cons. | Z3 | Storm | Cons | CS.UNSC | CBs | SUB.C | Cust. Rd 02 | Strm |
| B6.33 05 40.01.900 |  | Blinding Conc. (62.50% Completed) | 9.8d | 2026-09-05 A | 2026-09-15 A | B6.33 05 40.01.890 SS | 100% |  |  |  |  |  | Labor [19.49 h]; Foreman [9.75 h]; Laboratory Officer [9.75 h]; Carpenter [9.75 h]; Steelfixer [9.75 h]; Mason [9.75 h]; Double Catch basin [0.25] | 2,159.55 | 2,159.55 | 0.000577924475265344 | Cons. | Z3 | Storm | Cons | CS.UNSC | CBs | SUB.C | Cust. Rd 02 | Strm |
| B6.33 05 40.01.910 |  | Catch Basin Installation (62.50% Completed) | 7.8d | 2026-09-07 A | 2026-09-15 A | B6.33 05 40.01.900 SS | 100% |  |  |  |  |  | Labor [29.24 h]; Foreman [14.62 h]; Carpenter [14.62 h]; Steelfixer [14.62 h]; Mason [14.62 h]; Operator [29.24 h]; Surveyor [14.62 h]; Surveyor Helper [14.62 h]; Boom Truck [15 h]; Double Catch basin [1.14] | 10,046.63 | 10,046.63 | 0.00268861205772004 | Cons. | Z3 | Storm | Cons | CS.UNSC | CBs | SUB.C | Cust. Rd 02 | Strm |
| B6.33 05 40.01.890_R |  | Excavation, Compaction & Vapour Barrier(Rem) | 3d | 2026-10-14 A | 2026-10-22 | B6.33 05 40.01.410_R SS, B6.33 05 40.01.890 | 61% | 1.17d | 2026-10-14 | 2026-10-17 | 112.15d |  | Labor [11.69 h]; Foreman [5.85 h]; Operator [11.69 h]; Surveyor [5.85 h]; Surveyor Helper [5.85 h]; Excavator (With Bucket) [6 h]; Water Tanker [6 h]; Dump Truck [6 h]; Roller Compactor [6 h]; Double Catch basin [0.22] | 1,971.76 | 1,202.78 | 0.000879450288447266 | Cons. | Z3 | Storm | Cons | CS.UNSC | CBs | SUB.C | Cust. Rd 02 | Strm |
| B6.33 05 40.01.900_R |  | Blinding Conc.(Rem) | 3d | 2026-10-14 A | 2026-10-22 | B6.33 05 40.01.890_R SS, B6.33 05 40.01.900 | 61% | 1.17d | 2026-10-14 | 2026-10-17 | 112.15d |  | Labor [11.69 h]; Foreman [5.85 h]; Laboratory Officer [5.85 h]; Carpenter [5.85 h]; Steelfixer [5.85 h]; Mason [5.85 h]; Double Catch basin [0.15] | 1,295.73 | 790.4 | 0.000577924475265344 | Cons. | Z3 | Storm | Cons | CS.UNSC | CBs | SUB.C | Cust. Rd 02 | Strm |
| B6.33 05 40.01.910_R |  | Catch Basin Installation(Rem) | 2.12d | 2026-10-14 A | 2026-10-21 | B6.33 05 40.01.900_R SS, B6.33 05 40.01.910, B6.33 05 40.01.510_R | 61% | 0.83d | 2026-10-14 | 2026-10-18 | 112.49d |  | Labor [17.54 h]; Foreman [8.77 h]; Carpenter [8.77 h]; Steelfixer [8.77 h]; Mason [8.77 h]; Operator [17.54 h]; Surveyor [8.77 h]; Surveyor Helper [8.77 h]; Boom Truck [9 h]; Double Catch basin [0.68] | 6,027.98 | 3,677.07 | 0.00268861205772004 | Cons. | Z3 | Storm | Cons | CS.UNSC | CBs | SUB.C | Cust. Rd 02 | Strm |
| B6.33 05 40.01.920 |  | Backfilling, DI Frame & Grate Cover Fixing | 6d | 2026-10-18 A | 2026-10-24 | B6.33 42 11.36-193, B6.33 05 40.01.910_R | 61% | 2.34d | 2026-10-18 | 2026-10-25 | 41.98d | 0d | Labor [77.96 h]; Foreman [38.98 h]; Operator [77.96 h]; Surveyor [38.98 h]; Surveyor Helper [38.98 h]; Loader [40 h]; Water Tanker [40 h]; Dump Truck [40 h]; Plate Compactor [40 h]; Double Catch basin [1.19] | 10,516.1 | 6,414.82 | 0.00175890508448974 | Cons. | Z3 | Storm | Cons | CS.UNSC | CBs | SUB.C | Cust. Rd 02 | Strm |
|  | UPVC | **UPVC** |  | 2026-03-09 | 2026-09-22 |  |  |  |  |  |  |  |  |  |  |  |  |  |  |  |  |  |  |  |  |
|  | UPVC300 | **?300 From 0.0 to 1.5m** |  | 2026-03-09 | 2026-09-22 |  |  |  |  |  |  |  |  |  |  |  |  |  |  |  |  |  |  |  |  |
| B6.33 42 11.35-120 |  | Fittings & Pipe Installation | 3d | 2026-03-09 A | 2026-03-14 A | B6.33 05 39.01.3677 | 100% |  |  |  |  |  | Labor [28.35 h]; Foreman [14.17 h]; Plumber Helper [14.17 h]; Plumber [14.17 h]; Surveyor [14.17 h]; Surveyor Helper [14.17 h]; less than 1.5 [186.46] | 112,143.85 | 112,143.85 | 0.0603343421083148 | Cons. | Z3 | Storm | Cons | CS.UNSC | UPVC | SUB.C | Cust. Rd 02 | Strm |
| B6.33 42 11.35-18 |  | Catch Basin Opening Prep. (56.70% Completed) | 63d | 2026-07-05 A | 2026-09-15 A | B6.33 05 40.01.910 SS | 100% |  |  |  |  |  | Labor [17.68 h]; Foreman [8.84 h]; Plumber Helper [8.84 h]; Plumber [8.84 h]; less than 1.5 [26.43] | 15,896.39 | 15,896.39 | 0.0150835855285905 | Cons. | Z3 | Storm | Cons | CS.UNSC | UPVC | SUB.C | Cust. Rd 02 | Strm |
| B6.33 42 11.35-18_R |  | Catch Basin Opening Prep.(Rem) | 3d | 2026-09-20 A | 2026-09-22 A | B6.33 05 40.01.910_R SS, B6.33 42 11.35-18 | 100% |  |  |  |  |  | Labor [13.5 h]; Foreman [6.75 h]; Plumber Helper [6.75 h]; Plumber [6.75 h]; less than 1.5 [20.18] | 12,139.57 | 12,139.57 | 0.0150835855285905 | Cons. | Z3 | Storm | Cons | CS.UNSC | UPVC | SUB.C | Cust. Rd 02 | Strm |
|  | UPVC3001 | **?400 From 0.0 to 1.5m** |  | 2026-03-09 | 2026-09-22 |  |  |  |  |  |  |  |  |  |  |  |  |  |  |  |  |  |  |  |  |
| B6.33 42 11.36-193 |  | Fittings & Pipe Installation | 3d | 2026-03-09 A | 2026-03-14 A | B6.33 05 39.01.3677 | 100% |  |  |  |  |  | Labor [28.35 h]; Foreman [14.17 h]; Plumber Helper [14.17 h]; Plumber [14.17 h]; Surveyor [14.17 h]; Surveyor Helper [14.17 h]; less than 1.5 [186.46] | 112,143.85 | 112,143.85 | 0.0603343421083148 | Cons. | Z3 | Storm | Cons | CS.UNSC | UPVC | SUB.C | Cust. Rd 02 | Strm |
| B6.33 42 11.36-181 |  | Catch Basin Opening Prep. (56.70% Completed) | 61d | 2026-07-07 A | 2026-09-15 A | B6.33 42 11.35-18 SS | 100% |  |  |  |  |  | Labor [17.68 h]; Foreman [8.84 h]; Plumber Helper [8.84 h]; Plumber [8.84 h]; less than 1.5 [26.43] | 15,896.39 | 15,896.39 | 0.0150835855285905 | Cons. | Z3 | Storm | Cons | CS.UNSC | UPVC | SUB.C | Cust. Rd 02 | Strm |
| B6.33 42 11.36-181_R |  | Catch Basin Opening Prep.(Rem) | 3d | 2026-09-20 A | 2026-09-22 A | B6.33 42 11.35-18_R SS, B6.33 42 11.36-181, B6.33 05 40.01.950_R | 100% |  |  |  |  |  | Labor [13.5 h]; Foreman [6.75 h]; Plumber Helper [6.75 h]; Plumber [6.75 h]; less than 1.5 [20.18] | 12,139.57 | 12,139.57 | 0.0150835855285905 | Cons. | Z3 | Storm | Cons | CS.UNSC | UPVC | SUB.C | Cust. Rd 02 | Strm |
|  | Potable Water | **Potable Water Network** |  | 2026-09-27 | 2026-10-25 |  |  |  |  |  |  |  |  |  |  |  |  |  |  |  |  |  |  |  |  |
|  | HDPE | **HDPE Pipes** |  | 2026-09-27 | 2026-10-25 |  |  |  |  |  |  |  |  |  |  |  |  |  |  |  |  |  |  |  |  |
|  | ?110mm | **?110mm** |  | 2026-09-27 | 2026-10-25 |  |  |  |  |  |  |  |  |  |  |  |  |  |  |  |  |  |  |  |  |
|  | Depth: 1.51m - 2.5m | **Depth: 0.51m - 1.5m** |  | 2026-09-27 | 2026-10-25 |  |  |  |  |  |  |  |  |  |  |  |  |  |  |  |  |  |  |  |  |
| B3.33 14 13-191 |  | Excavation | 3d | 2026-09-27 A | 2026-10-24 | B3.33 14 13-91_R, B6.33 05 39.01.3617 | 19% | 2.43d | 2026-10-27 | 2026-10-29 | 110.89d |  | Labor [31.18 h]; Foreman [15.59 h]; Operator [31.18 h]; Surveyor [15.59 h]; Surveyor Helper [15.59 h]; Excavator (With Bucket) [16 h]; Water Tanker [16 h]; Dump Truck [16 h]; Plate Compactor [16 h]; Depth: 0.0m - 1.5m [155.75] | 22,426.31 | 16,351.64 | 0.00449622803237392 | Cons. | Z3 | Potable | Cons | CS.UNSC | HDPEs | SUB.C | Cust. Rd 02 | Pot |
| B3.33 14 13-193 |  | Sand Bedding | 3d | 2026-09-30 A | 2026-10-24 | B3.33 14 13-191 | 19% | 2.43d | 2026-10-31 | 2026-11-02 | 110.89d |  | Labor [31.18 h]; Foreman [15.59 h]; Operator [62.37 h]; Surveyor [15.59 h]; Surveyor Helper [15.59 h]; Loader [16 h]; Water Tanker [16 h]; Dump Truck [16 h]; Plate Compactor [16 h]; Depth: 0.0m - 1.5m [38.94] | 5,607.6 | 3,796.17 | 0.00112426239033505 | Cons. | Z3 | Potable | Cons | CS.UNSC | HDPEs | SUB.C | Cust. Rd 02 | Pot |
| B3.33 14 13-195 |  | Pipe Laying | 3d | 2026-10-03 A | 2026-10-24 | B3.33 14 13-193 | 19% | 2.43d | 2026-11-03 | 2026-11-05 | 110.89d |  | Labor [31.18 h]; Foreman [15.59 h]; Plumber Helper [15.59 h]; Plumber [15.59 h]; Operator [15.59 h]; Surveyor [15.59 h]; Surveyor Helper [15.59 h]; Mobile Crane [16 h]; Depth: 0.0m - 1.5m [350.44] | 50,460.23 | 31,699.44 | 0.0101167184550828 | Cons. | Z3 | Potable | Cons | CS.UNSC | HDPEs | SUB.C | Cust. Rd 02 | Pot |
| B3.33 14 13-197 |  | Embedment & Test | 4d | 2026-10-07 A | 2026-10-25 | B3.33 14 13-195 | 19% | 3.24d | 2026-11-07 | 2026-11-10 | 110.08d |  | Labor [62.37 h]; Foreman [31.18 h]; Plumber Helper [31.18 h]; Plumber [31.18 h]; Operator [62.37 h]; Surveyor [31.18 h]; Surveyor Helper [31.18 h]; Loader [32 h]; Water Tanker [32 h]; Dump Truck [32 h]; Plate Compactor [32 h]; Roller Compactor [32 h]; Depth: 0.0m - 1.5m [155.75] | 22,426.31 | 9,180.88 | 0.00449622803237392 | Cons. | Z3 | Potable | Cons | CS.UNSC | HDPEs | SUB.C | Cust. Rd 02 | Pot |
| B3.33 14 13-199 |  | Backfilling & Warrning Tape | 4d | 2026-10-11 A | 2026-10-25 | B3.33 14 13-197, B3.33 14 13.01.01017_R | 19% | 3.24d | 2026-11-11 | 2026-11-15 | 110.08d |  | Labor [77.96 h]; Foreman [38.98 h]; Operator [155.92 h]; Surveyor [38.98 h]; Surveyor Helper [38.98 h]; Loader [40 h]; Water Tanker [40 h]; Dump Truck [40 h]; Plate Compactor [40 h]; Roller Compactor [40 h]; Depth: 0.0m - 1.5m [77.87] | 11,213.16 | 3,234.78 | 0.00224811401618696 | Cons. | Z3 | Potable | Cons | CS.UNSC | HDPEs | SUB.C | Cust. Rd 02 | Pot |

| ID | WBS | Activity | Duration | Start | Finish | Predecessors | Complete | Remaining | Planned start | Planned finish | Total float | Free float | Resources | Cost | Actual cost | Weight % | DMM2 Weekly Progress | DMM2 Zones | Networks & Stations | DMM2 Phases | UNASCO | Networks Components | Subcontractors works | Dmm2 Roads | Yellow Sheet | All Electrical Scope |
| --- | --- | --- | --- | --- | --- | --- | --- | --- | --- | --- | --- | --- | --- | --- | --- | --- | --- | --- | --- | --- | --- | --- | --- | --- | --- | --- |
|  | Fire Fighting | **Fire Fighting Network** |  | 2026-09-30 | 2026-11-21 |  |  |  |  |  |  |  |  |  |  |  |  |  |  |  |  |  |  |  |  |  |
|  | HDPE | **HDPE Pipes** |  | 2026-09-30 | 2026-10-27 |  |  |  |  |  |  |  |  |  |  |  |  |  |  |  |  |  |  |  |  |  |
|  | ?250mm | **?250mm** |  | 2026-09-30 | 2026-10-27 |  |  |  |  |  |  |  |  |  |  |  |  |  |  |  |  |  |  |  |  |  |
|  | Depth: 1.51m - 2.5m | **Depth: 0.51m - 1.5m** |  | 2026-09-30 | 2026-10-27 |  |  |  |  |  |  |  |  |  |  |  |  |  |  |  |  |  |  |  |  |  |
| B3.1. 33 14 13-119 |  | Excavation | 4d | 2026-09-30 A | 2026-10-25 | B3.33 14 13-191 | 12% | 3.52d | 2026-10-31 | 2026-11-03 | 109.8d |  | Labor [31.18 h]; Foreman [15.59 h]; Operator [31.18 h]; Surveyor [15.59 h]; Surveyor Helper [15.59 h]; Excavator (With Bucket) [16 h]; Water Tanker [16 h]; Dump Truck [16 h]; Plate Compactor [16 h]; Depth: 0.0m - 1.5m [131.51] | 62,927.13 | 36,649.78 | 0.0135564090273793 | Cons. | Z3 | Fire | Cons | CS.UNSC | HDPEs | SUB.C | Cust. Rd 02 | Fire |  |
| B3.1. 33 14 13-1111 |  | Sand Bedding | 4d | 2026-10-04 A | 2026-10-25 | B3.1. 33 14 13-119 | 12% | 3.52d | 2026-11-04 | 2026-11-08 | 109.8d |  | Labor [31.18 h]; Foreman [15.59 h]; Operator [62.37 h]; Surveyor [15.59 h]; Surveyor Helper [15.59 h]; Loader [16 h]; Water Tanker [16 h]; Dump Truck [16 h]; Plate Compactor [16 h]; Depth: 0.0m - 1.5m [32.88] | 15,733.37 | 7,966.16 | 0.00338944352179868 | Cons. | Z3 | Fire | Cons | CS.UNSC | HDPEs | SUB.C | Cust. Rd 02 | Fire |  |
| B3.1. 33 14 13-1113 |  | Pipe Laying | 4d | 2026-10-09 A | 2026-10-25 | B3.1. 33 14 13-1111 | 12% | 3.52d | 2026-11-09 | 2026-11-12 | 95.8d | 0d | Labor [31.18 h]; Foreman [15.59 h]; Plumber Helper [15.59 h]; Plumber [15.59 h]; Operator [15.59 h]; Surveyor [15.59 h]; Surveyor Helper [15.59 h]; Mobile Crane [16 h]; Depth: 0.0m - 1.5m [295.89] | 141,587.64 | 45,182.54 | 0.0305022615765573 | Cons. | Z3 | Fire | Cons | CS.UNSC | HDPEs | SUB.C | Cust. Rd 02 | Fire |  |
| B3.1. 33 14 13-1115 |  | Embedment & Test | 6d | 2026-10-11 A | 2026-10-27 | B3.1. 33 14 13-1113 | 12% | 5.28d | 2026-11-14 | 2026-11-19 | 87.04d | 0d | Labor [62.37 h]; Foreman [31.18 h]; Plumber Helper [31.18 h]; Plumber [31.18 h]; Operator [62.37 h]; Surveyor [31.18 h]; Surveyor Helper [31.18 h]; Loader [32 h]; Water Tanker [32 h]; Dump Truck [32 h]; Plate Compactor [32 h]; Roller Compactor [32 h]; Depth: 0.0m - 1.5m [131.51] | 62,927.13 | 13,677.75 | 0.0135564090273793 | Cons. | Z3 | Fire | Cons | CS.UNSC | HDPEs | SUB.C | Cust. Rd 02 | Fire |  |
| B3.1. 33 14 13-1117 |  | Backfilling & Warrning Tape | 5d | 2026-10-12 A | 2026-10-26 | B3.1. 33 14 13-1115, B3.1. 33 14 13-01108, B3.33 14 19.01.fh45 | 12% | 4.4d | 2026-11-21 | 2026-11-25 | 88.92d | 3.6d | Labor [77.96 h]; Foreman [38.98 h]; Operator [155.92 h]; Surveyor [38.98 h]; Surveyor Helper [38.98 h]; Loader [40 h]; Water Tanker [40 h]; Dump Truck [40 h]; Plate Compactor [40 h]; Roller Compactor [40 h]; Depth: 0.0m - 1.5m [65.75] | 31,460.4 | 5,896.91 | 0.00677752198378195 | Cons. | Z3 | Fire | Cons | CS.UNSC | HDPEs | SUB.C | Cust. Rd 02 | Fire |  |
|  | Valves & Chambers | **Valves & Chambers** |  | 2026-10-27 | 2026-11-21 |  |  |  |  |  |  |  |  |  |  |  |  |  |  |  |  |  |  |  |  |  |
|  | 2 | **Air Valves** |  | 2026-10-27 | 2026-11-21 |  |  |  |  |  |  |  |  |  |  |  |  |  |  |  |  |  |  |  |  |  |
|  | 4 | **Air valves on less than 315 mm. (In Chamber)** |  | 2026-10-27 | 2026-11-21 |  |  |  |  |  |  |  |  |  |  |  |  |  |  |  |  |  |  |  |  |  |
| B3.33 05 63.02.67 |  | Land Adjustment & Compaction | 4d | 2026-10-27 | 2026-11-01 | B3.1. 33 14 13-1115 |  |  |  |  | 87.04d | 0d | Labor [31.18 h]; Foreman [15.59 h]; Operator [62.37 h]; Surveyor [15.59 h]; Surveyor Helper [15.59 h]; Excavator (With Bucket) [16 h]; Water Tanker [16 h]; Dump Truck [16 h]; Plate Compactor [16 h]; FF Air valve Dia. 50 mm on pipes with Dia. less than 315 mm [0.18]; FF Air valve chamber; on less than 315 mm Dia. pipeline [0.18] | 4,485.6 |  | 0.000842899444995834 | Cons. | Z3 | Fire | Cons | CS.UNSC | Val&Chs | SUB.C | Cust. Rd 02 | Fire |  |
| B3.33 05 63.02.65 |  | Foundations | 4d | 2026-11-01 | 2026-11-05 | B3.33 05 63.02.67 |  |  |  |  | 87.04d | 0d | Labor [46.78 h]; Foreman [23.39 h]; Laboratory Officer [23.39 h]; Carpenter [23.39 h]; Steelfixer [23.39 h]; Mason [23.39 h]; FF Air valve Dia. 50 mm on pipes with Dia. less than 315 mm [0.18]; FF Air valve chamber; on less than 315 mm Dia. pipeline [0.24] | 5,821.24 |  | 0.00109388285056526 | Cons. | Z3 | Fire | Cons | CS.UNSC | Val&Chs | SUB.C | Cust. Rd 02 | Fire |  |
| B3.33 05 63.02.68 |  | Chambers Walls Conc Cast In Situ | 4d | 2026-11-05 | 2026-11-10 | B3.33 05 63.02.65 |  |  |  |  | 87.04d | 0d | Labor [46.78 h]; Foreman [23.39 h]; Laboratory Officer [23.39 h]; Carpenter [23.39 h]; Steelfixer [23.39 h]; Mason [23.39 h]; FF Air valve Dia. 50 mm on pipes with Dia. less than 315 mm [0.24]; FF Air valve chamber; on less than 315 mm Dia. pipeline [0.24] | 5,980.8 |  | 0.00112386592666111 | Cons. | Z3 | Fire | Cons | CS.UNSC | Val&Chs | SUB.C | Cust. Rd 02 | Fire |  |
| B3.33 05 63.02.66 |  | Chamber Curing, Finishing & Steel Cover | 5d | 2026-11-10 | 2026-11-16 | B3.33 05 63.02.68 |  |  |  |  | 87.04d | 0d | Labor [62.37 h]; Mason [31.18 h]; FF Air valve Dia. 50 mm on pipes with Dia. less than 315 mm [0.24]; FF Air valve chamber; on less than 315 mm Dia. pipeline [0.18] | 4,645.16 |  | 0.000872882521091683 | Cons. | Z3 | Fire | Cons | CS.UNSC | Val&Chs | SUB.C | Cust. Rd 02 | Fire |  |
| B3.33 05 63.02.69 |  | Valve & Fitting Installation | 4d | 2026-11-16 | 2026-11-21 | B3.33 05 63.02.66 |  |  |  |  | 87.04d | 10.13d | Labor [62.37 h]; Plumber Helper [31.18 h]; Plumber [31.18 h]; Operator [62.37 h]; Boom Truck [32 h]; FF Air valve Dia. 50 mm on pipes with Dia. less than 315 mm [0.38]; FF Air valve chamber; on less than 315 mm Dia. pipeline [0.38] | 9,344.99 |  | 0.001756040510408 | Cons. | Z3 | Fire | Cons | CS.UNSC | Val&Chs | SUB.C | Cust. Rd 02 | Fire |  |
|  | 3 | **Fire Hydrant** |  | 2026-10-25 | 2026-11-16 |  |  |  |  |  |  |  |  |  |  |  |  |  |  |  |  |  |  |  |  |  |
| B3.33 14 19.01.fh38 |  | Riser Pipe & Flanged Fittings Installation | 4d | 2026-10-25 | 2026-10-29 | B3.1. 33 14 13-1113 |  |  |  |  | 95.8d | 0d | Labor [31.18 h]; Plumber Helper [15.59 h]; Welder [15.59 h]; Plumber [15.59 h]; Surveyor [15.59 h]; Surveyor Helper [15.59 h]; Welding Machine [16 h]; 3-outlet fire hydrant (2 x 2.5 inch and 1 x 4.5 inch) in the form of a separate dry vacuum cylinder [1.49] | 16,415.29 |  | 0.00314407764631429 | Cons. | Z3 | Fire | Cons | CS.UNSC | FH | SUB.C | Cust. Rd 02 | Fire |  |
| B3.33 14 19.01.fh37 |  | Firehydrant Fixing/Installation | 5d | 2026-10-29 | 2026-11-04 | B3.33 14 19.01.fh38 |  |  |  |  | 95.8d | 5d | Labor [46.78 h]; Foreman [23.39 h]; Plumber Helper [23.39 h]; Plumber [23.39 h]; Operator [46.78 h]; Surveyor [23.39 h]; Surveyor Helper [23.39 h]; JCB [24 h]; 3-outlet fire hydrant (2 x 2.5 inch and 1 x 4.5 inch) in the form of a separate dry vacuum cylinder [4.47] | 49,245.86 |  | 0.0094322329389428 | Cons. | Z3 | Fire | Cons | CS.UNSC | FH | SUB.C | Cust. Rd 02 | Fire |  |
| B3.33 14 19.01.fh39 |  | Backfilling & Compaction | 5d | 2026-11-10 | 2026-11-16 | B3.33 14 19.01.fh37, B3.1. 33 14 13-11109, B3.33 14 19.01.fh36, DMM2-Proc-Delv-5898 |  |  |  |  | 90.8d | 13.89d | Labor [77.96 h]; Foreman [38.98 h]; Operator [77.96 h]; Surveyor [38.98 h]; Surveyor Helper [38.98 h]; Loader [40 h]; Water Tanker [40 h]; Dump Truck [40 h]; Plate Compactor [40 h]; 3-outlet fire hydrant (2 x 2.5 inch and 1 x 4.5 inch) in the form of a separate dry vacuum cylinder [1.49] | 16,415.29 |  | 0.00314407764631429 | Cons. | Z3 | Fire | Cons | CS.UNSC | FH | SUB.C | Cust. Rd 02 | Fire |  |
|  | Dry Networks | **Dry Networks** |  | 2026-10-24 | 2026-12-19 |  |  |  |  |  |  |  |  |  |  |  |  |  |  |  |  |  |  |  |  |  |
|  | MV | **Medium Voltage Network** |  | 2026-10-24 | 2026-11-07 |  |  |  |  |  |  |  |  |  |  |  |  |  |  |  |  |  |  |  |  |  |
|  | Cables | **Cables** |  | 2026-10-24 | 2026-11-07 |  |  |  |  |  |  |  |  |  |  |  |  |  |  |  |  |  |  |  |  |  |
|  | 3C,500mm2 | **3C,500mm2** |  | 2026-10-24 | 2026-11-07 |  |  |  |  |  |  |  |  |  |  |  |  |  |  |  |  |  |  |  |  |  |
| B2.33 71 49.23.83 |  | Cable 13.8 kV Unarmored | 4d | 2026-10-24 | 2026-10-28 | B6.33 05 40.01.920 |  |  |  |  | 79.98d | 0d | Labor [46.78 h]; Foreman [23.39 h]; Operator [46.78 h]; Boom Truck [24 h]; Electrician [23.39 h]; Cable 13.8 kV 3Cx 500 mm² Al XLPE,/LLDPE / Unarmored [681.79] | 234,058.34 |  | 0.0447374191430308 | Cons. | Z3 | MV | Cons |  | Cbl&Dct | SUB.C | Cust. Rd 02 | MV | allElec |
| B2.33 71 49.23.84 |  | Straight joints cables | 3d | 2026-10-28 | 2026-11-01 | B2.33 71 49.23.83 |  |  |  |  | 79.98d | 1.66d | Labor [31.18 h]; Foreman [15.59 h]; Electrician [15.59 h]; Straight joints cables for 13.8 kv 3Cx 500 mm², Al /XLPE/LLDPE [2] | 7,880.95 |  | 0.00396214380929156 | Cons. | Z3 | MV | Cons |  | Cbl&Dct | SUB.C | Cust. Rd 02 | MV | allElec |
| B2.33 71 49.23.85 |  | Cable Termination | 4d | 2026-11-03 | 2026-11-07 | B2.33 71 49.23.84, B2.33 71 49.23.03 |  |  |  |  | 78.32d | 0d | Labor [46.78 h]; Foreman [23.39 h]; Electrician [23.39 h]; Cable Termination for 13.8 kv 3Cx 500 mm², Al /XLPE/LLDPE [0.91] | 3,058.5 |  | 0.00153766139892947 | Cons. | Z3 | MV | Cons |  | Cbl&Dct | SUB.C | Cust. Rd 02 | MV | allElec |

| ID | WBS | Activity | Duration | Start | Finish | Predecessors | Total float | Free float | Resources | Cost | Weight % | DMM2 Weekly Progress | DMM2 Zones | Networks & Stations | DMM2 Phases | Networks Components | All Electrical Scope | Subcontractors works | Dmm2 Roads | Yellow Sheet |
| --- | --- | --- | --- | --- | --- | --- | --- | --- | --- | --- | --- | --- | --- | --- | --- | --- | --- | --- | --- | --- |
|  | LV Network | **Low Voltage Network** |  | 2026-10-24 | 2026-11-05 |  |  |  |  |  |  |  |  |  |  |  |  |  |  |  |
|  | Duct Banks | **Duct Banks** |  | 2026-10-24 | 2026-11-05 |  |  |  |  |  |  |  |  |  |  |  |  |  |  |  |
|  | 6 Way | **6 Way** |  | 2026-10-24 | 2026-11-02 |  |  |  |  |  |  |  |  |  |  |  |  |  |  |  |
| B2.33 71 00 02 136 |  | Excavation | 2d | 2026-10-24 | 2026-10-26 | B6.33 05 40.01.920 | 41.98d | 0d | Labor [31.18 h]; Foreman [15.59 h]; Operator [31.18 h]; Surveyor [15.59 h]; Surveyor Helper [15.59 h]; Excavator (With Bucket) [16 h]; Water Tanker [16 h]; Dump Truck [16 h]; Plate Compactor [16 h]; Excavation for Trench size 90cm wide and 65cm deep ( for 3 cables); Duct bank for LV cables UPVC (6xDia. 110mm) [5]; SL LV Excavation for Trench size 90cm wide and 65cm deep ( for 3 cables) | 2,844.71 | 0.00162137899963146 | Cons. | Z3 | LV | Cons | Cbl&Dct | allElec | SUB.C | Cust. Rd 02 | LV |
| B2.33 71 00 02 137 |  | Shuttering, Steel Fixing Incl. UPVC Pipe & Conc. Cast | 3d | 2026-10-26 | 2026-10-29 | B2.33 71 00 02 136 | 99.98d | 0d | Labor [46.78 h]; Laboratory Officer [23.39 h]; Carpenter [23.39 h]; Steelfixer [23.39 h]; Mason [23.39 h]; Surveyor [23.39 h]; Surveyor Helper [23.39 h]; Excavation for Trench size 90cm wide and 65cm deep ( for 3 cables); Duct bank for LV cables UPVC (6xDia. 110mm) [15]; SL LV Excavation for Trench size 90cm wide and 65cm deep ( for 3 cables) | 8,534.12 | 0.00486436653485481 | Cons. | Z3 | LV | Cons | Cbl&Dct | allElec | SUB.C | Cust. Rd 02 | LV |
| B2.33 71 00 02 138 |  | Backfilling & Warrning Tape | 3d | 2026-10-29 | 2026-11-02 | B2.33 71 00 02 137, B2.33 71 00 02 147 | 99.98d | 0d | Labor [46.78 h]; Foreman [23.39 h]; Operator [93.55 h]; Surveyor [23.39 h]; Surveyor Helper [23.39 h]; Loader [24 h]; Water Tanker [24 h]; Dump Truck [24 h]; Plate Compactor [24 h]; Roller Compactor [24 h]; Excavation for Trench size 90cm wide and 65cm deep ( for 3 cables); Duct bank for LV cables UPVC (6xDia. 110mm) [5]; SL LV Excavation for Trench size 90cm wide and 65cm deep ( for 3 cables) | 2,844.71 | 0.00162137899963146 | Cons. | Z3 | LV | Cons | Cbl&Dct | allElec | SUB.C | Cust. Rd 02 | LV |
|  | 8 Way | **8 Way** |  | 2026-10-26 | 2026-11-05 |  |  |  |  |  |  |  |  |  |  |  |  |  |  |  |
| B2.33 71 00 02 139 |  | Excavation | 2d | 2026-10-26 | 2026-10-28 | B2.33 71 00 02 136 | 41.98d | 0d | Labor [31.18 h]; Foreman [15.59 h]; Operator [31.18 h]; Surveyor [15.59 h]; Surveyor Helper [15.59 h]; Excavator (With Bucket) [16 h]; Water Tanker [16 h]; Dump Truck [16 h]; Plate Compactor [16 h]; Excavation for Trench size 120cm wide and 65cm deep ( for 4 cables); Duct bank for LV cables UPVC (8xDia. 110mm) [3.67]; SL LV Excavation for Trench size 120cm wide and 65cm deep ( for 4 cables) | 2,680.93 | 0.00142427063447639 | Cons. | Z3 | LV | Cons | Cbl&Dct | allElec | SUB.C | Cust. Rd 02 | LV |
| B2.33 71 00 02 140 |  | Shuttering, Steel Fixing Incl. UPVC Pipe & Conc. Cast | 3d | 2026-10-28 | 2026-11-01 | B2.33 71 00 02 139 | 100.98d | 1d | Labor [46.78 h]; Laboratory Officer [23.39 h]; Carpenter [23.39 h]; Steelfixer [23.39 h]; Mason [23.39 h]; Surveyor [23.39 h]; Surveyor Helper [23.39 h]; Excavation for Trench size 120cm wide and 65cm deep ( for 4 cables); Duct bank for LV cables UPVC (8xDia. 110mm) [11]; SL LV Excavation for Trench size 120cm wide and 65cm deep ( for 4 cables) | 8,035.48 | 0.00426936886402274 | Cons. | Z3 | LV | Cons | Cbl&Dct | allElec | SUB.C | Cust. Rd 02 | LV |
| B2.33 71 00 02 141 |  | Backfilling & Warrning Tape | 3d | 2026-11-02 | 2026-11-05 | B2.33 71 00 02 140, B2.33 71 00 02 138, B2.33 71 00 02 98 | 99.98d |  | Labor [46.78 h]; Foreman [23.39 h]; Operator [93.55 h]; Surveyor [23.39 h]; Surveyor Helper [23.39 h]; Loader [24 h]; Water Tanker [24 h]; Dump Truck [24 h]; Plate Compactor [24 h]; Roller Compactor [24 h]; Excavation for Trench size 120cm wide and 65cm deep ( for 4 cables); Duct bank for LV cables UPVC (8xDia. 110mm) [3.67]; SL LV Excavation for Trench size 120cm wide and 65cm deep ( for 4 cables) | 2,680.93 | 0.00142427063447639 | Cons. | Z3 | LV | Cons | Cbl&Dct | allElec | SUB.C | Cust. Rd 02 | LV |
|  | Cables | **Cables** |  | 2026-10-27 | 2026-11-01 |  |  |  |  |  |  |  |  |  |  |  |  |  |  |  |
|  | 4C,10+1C,10mm2 | **4C,10+1C,10mm2** |  | 2026-10-27 | 2026-10-29 |  |  |  |  |  |  |  |  |  |  |  |  |  |  |  |
| B2.33 71 00 01 15 |  | Cable Pulling | 2d | 2026-10-27 | 2026-10-29 | B2.33 71 00 01 18 | 55d | 0d | Labor [62.37 h]; Foreman [31.18 h]; Surveyor [31.18 h]; Surveyor Helper [31.18 h]; Electrician [31.18 h]; Cable, Copper 4x10mm2/ CU/XLPE/SWA/PVC + 1x10mm2 CU/PVC [1535.55] | 95,723.28 | 0.0182956258973869 | Cons. | Z3 | LV | Cons | Cbl&Dct | allElec | SUB.C | Cust. Rd 02 | LV |
|  | 4C,50+1C,25mm2 | **4C,50+1C,25mm2** |  | 2026-10-29 | 2026-11-01 |  |  |  |  |  |  |  |  |  |  |  |  |  |  |  |
| B2.33 71 00 01 16 |  | Cable Pulling | 2d | 2026-10-29 | 2026-11-01 | B2.33 71 00 01 15 | 55d | 48d | Labor [62.37 h]; Foreman [31.18 h]; Surveyor [31.18 h]; Surveyor Helper [31.18 h]; Electrician [31.18 h]; Cable, Copper 4x50mm2/ CU/XLPE/PVC +1x25mm2 CU/PVC [137.49] | 25,833.3 | 0.00493828300375468 | Cons. | Z3 | LV | Cons | Cbl&Dct | allElec | SUB.C | Cust. Rd 02 | LV |
|  | Street Lighting | **Street Lighting** |  | 2026-10-31 | 2026-12-19 |  |  |  |  |  |  |  |  |  |  |  |  |  |  |  |
|  | Cables | **Cables** |  | 2026-11-15 | 2026-11-21 |  |  |  |  |  |  |  |  |  |  |  |  |  |  |  |
|  | 4C,10+1C,10mm2 | **4C,10+1C,10mm2** |  | 2026-11-15 | 2026-11-21 |  |  |  |  |  |  |  |  |  |  |  |  |  |  |  |
| B2.33 71 19 142 |  | Land Adjustment | 2d | 2026-11-15 | 2026-11-16 | B2.33 71 19 192 SS | 84.32d | 0d | Labor [62.37 h]; Foreman [31.18 h]; Operator [31.18 h]; Surveyor [7.8 h]; Surveyor Helper [7.8 h]; Excavator (With Bucket) [32 h]; Water Tanker [32 h]; Dump Truck [32 h]; Roller Compactor [32 h]; SL Cable, Copper 4x10mm2/ CU/XLPE/SWA/PVC + 1x10mm2 CU/PVC [416.5] | 25,963.96 | 0.00496258855349975 | Cons. | Z3 | SL | Cons | Cables | allElec | SUB.C | Cust. Rd 02 | SL |
| B2.33 71 49.23.152 |  | Cable Pulling | 2d | 2026-11-17 | 2026-11-18 | B2.33 71 19 142 | 84.32d | 0d | Labor [77.96 h]; Foreman [38.98 h]; Surveyor [38.98 h]; Surveyor Helper [38.98 h]; Electrician [38.98 h]; SL Cable, Copper 4x10mm2/ CU/XLPE/SWA/PVC + 1x10mm2 CU/PVC [1249.49] | 77,890.96 | 0.0148875878281853 | Cons. | Z3 | SL | Cons | Cables | allElec | SUB.C | Cust. Rd 02 | SL |
| B2.33 71 19 152 |  | Backfilling | 2d | 2026-11-19 | 2026-11-21 | B2.33 71 49.23.152 | 84.32d | 22d | Labor [93.55 h]; Foreman [46.78 h]; Operator [93.55 h]; Surveyor [46.78 h]; Surveyor Helper [46.78 h]; Loader [48 h]; Water Tanker [48 h]; Dump Truck [48 h]; Plate Compactor [48 h]; SL Cable, Copper 4x10mm2/ CU/XLPE/SWA/PVC + 1x10mm2 CU/PVC [416.5] | 25,963.96 | 0.00496258855349975 | Cons. | Z3 | SL | Cons | Cables | allElec | SUB.C | Cust. Rd 02 | SL |
|  | SL Poles | **SL Poles** |  | 2026-10-31 | 2026-11-15 |  |  |  |  |  |  |  |  |  |  |  |  |  |  |  |
|  | Pole (10 M Dbl Arm) | **Pole (10 M Double Arm)** |  | 2026-10-31 | 2026-11-12 |  |  |  |  |  |  |  |  |  |  |  |  |  |  |  |
| B2.33 71 16.79 |  | Excavation | 2d | 2026-10-31 | 2026-11-01 | B3.1. 33 14 13-1117, B2.33 71 16.75_R | 85.32d | 0d | Labor [31.18 h]; Foreman [15.59 h]; Operator [31.18 h]; Surveyor [15.59 h]; Surveyor Helper [15.59 h]; Excavator (With Bucket) [16 h]; Dump Truck [16 h]; Lighting poles with 2 arms, height of ( 10) meters [2.01] | 18,488.33 | 0.00352048130754849 | Cons. | Z3 | SL | Cons | Pls&Lmn | allElec | SUB.C | Cust. Rd 02 | SL |
| B2.33 71 16.80 |  | PC & RC Foundation | 2d | 2026-11-02 | 2026-11-03 | B2.33 71 16.79 | 85.32d | 0d | Labor [62.37 h]; Foreman [31.18 h]; Laboratory Officer [31.18 h]; Carpenter [31.18 h]; Steelfixer [31.18 h]; Mason [31.18 h]; Lighting poles with 2 arms, height of ( 10) meters [1.86] | 17,169.04 | 0.00326926805990047 | Cons. | Z3 | SL | Cons | Pls&Lmn | allElec | SUB.C | Cust. Rd 02 | SL |
| B2.33 71 16.81 |  | Lighting Poles Installation Incl power box, Cables | 3d | 2026-11-04 | 2026-11-07 | B2.33 71 16.80 | 85.32d | 0d | Labor [77.96 h]; Operator [77.96 h]; Mobile Crane [40 h]; Electrician [38.98 h]; Lighting poles with 2 arms, height of ( 10) meters [4.01] | 36,976.66 | 0.00704096261509691 | Cons. | Z3 | SL | Cons | Pls&Lmn | allElec | SUB.C | Cust. Rd 02 | SL |
| B2.26.56.19.13 |  | Lighting Luminares Inst | 2d | 2026-11-08 | 2026-11-09 | B2.33 71 16.81 | 85.32d | 0d | Labor [62.37 h]; Operator [62.37 h]; Manlift [32 h]; Street Lighting( LED), Lamp Lumen: 14560, Luminare Lumen:12700 , complete with control gear and lamp, (80) WATT. [30.11] | 27,918.13 | 0.0047113256383061 | Cons. | Z3 | SL | Cons | Pls&Lmn | allElec | SUB.C | Cust. Rd 02 | SL |
| B2.33 71 16.82 |  | Backfilling, Grouting & Chamfering | 3d | 2026-11-10 | 2026-11-12 | B2.26.56.19.13 | 85.32d | 1d | Labor [93.55 h]; Foreman [46.78 h]; Mason [46.78 h]; Operator [93.55 h]; Surveyor [46.78 h]; Surveyor Helper [46.78 h]; Loader [48 h]; Water Tanker [48 h]; Dump Truck [48 h]; Plate Compactor [48 h]; Lighting poles with 2 arms, height of ( 10) meters [2.01] | 18,488.33 | 0.00352048130754849 | Cons. | Z3 | SL | Cons | Pls&Lmn | allElec | SUB.C | Cust. Rd 02 | SL |

| ID | WBS | Activity | Duration | Start | Finish | Predecessors | Total float | Free float | Resources | Cost | Weight % | DMM2 Weekly Progress | DMM2 Zones | Networks & Stations | DMM2 Phases | Networks Components | All Electrical Scope | Subcontractors works | Dmm2 Roads | Yellow Sheet |
| --- | --- | --- | --- | --- | --- | --- | --- | --- | --- | --- | --- | --- | --- | --- | --- | --- | --- | --- | --- | --- |
|  | Pole (16 M Dbl Arm) | **Pole (16 M Double Arm)** |  | 2026-11-02 | 2026-11-15 |  |  |  |  |  |  |  |  |  |  |  |  |  |  |  |
| B2.33 71 16.83 |  | Excavation | 2d | 2026-11-02 | 2026-11-03 | B2.33 71 16.79, B2.33 71 00 02 157 | 89.32d | 0d | Labor [31.18 h]; Foreman [15.59 h]; Operator [31.18 h]; Surveyor [15.59 h]; Surveyor Helper [15.59 h]; Excavator (With Bucket) [16 h]; Dump Truck [16 h]; Lighting poles with 2 arms , height of (16 ) meters [0.9] | 19,388.56 | 0.00369325501598017 | Cons. | Z3 | SL | Cons | Pls&Lmn | allElec | SUB.C | Cust. Rd 02 | SL |
| B2.33 71 16.84 |  | PC & RC Foundation | 3d | 2026-11-04 | 2026-11-07 | B2.33 71 16.83 | 89.32d | 0d | Labor [62.37 h]; Foreman [31.18 h]; Laboratory Officer [31.18 h]; Carpenter [31.18 h]; Steelfixer [31.18 h]; Mason [31.18 h]; Lighting poles with 2 arms , height of (16 ) meters [0.9] | 19,388.56 | 0.00369325501598017 | Cons. | Z3 | SL | Cons | Pls&Lmn | allElec | SUB.C | Cust. Rd 02 | SL |
| B2.33 71 16.85 |  | Lighting Poles Installation Incl power box, Cables | 3d | 2026-11-08 | 2026-11-10 | B2.33 71 16.84 | 89.32d | 0d | Labor [77.96 h]; Operator [77.96 h]; Mobile Crane [40 h]; Electrician [38.98 h]; Lighting poles with 2 arms , height of (16 ) meters [1.81] | 39,100.27 | 0.00744806428222668 | Cons. | Z3 | SL | Cons | Pls&Lmn | allElec | SUB.C | Cust. Rd 02 | SL |
| B2.26.56.19.14 |  | Lighting Luminares Inst | 2d | 2026-11-11 | 2026-11-12 | B2.33 71 16.85 | 89.32d | 0d | Labor [62.37 h]; Operator [62.37 h]; Manlift [32 h]; Street Lighting( LED), Lamp Lumen: 34805, Luminare Lumen:28310, complete with control gear and lamp, (190) WATT. [18] | 21,904.4 | 0.00418778207400471 | Cons. | Z3 | SL | Cons | Pls&Lmn | allElec | SUB.C | Cust. Rd 02 | SL |
| B2.33 71 16.86 |  | Backfilling, Grouting & Chamfering | 2d | 2026-11-14 | 2026-11-15 | B2.26.56.19.14, B2.33 71 00 02 043 | 89.32d | 36.41d | Labor [93.55 h]; Foreman [46.78 h]; Mason [46.78 h]; Operator [93.55 h]; Surveyor [46.78 h]; Surveyor Helper [46.78 h]; Loader [48 h]; Water Tanker [48 h]; Dump Truck [48 h]; Plate Compactor [48 h]; Lighting poles with 2 arms , height of (16 ) meters [0.9] | 19,388.56 | 0.00369325501598017 | Cons. | Z3 | SL | Cons | Pls&Lmn | allElec | SUB.C | Cust. Rd 02 | SL |
|  | SL Pillars | **SL Pillars** |  | 2026-11-11 | 2026-11-14 |  |  |  |  |  |  |  |  |  |  |  |  |  |  |  |
| B2.33 71 26 032 |  | Pillars Installation (Internal Wiring) | 2d | 2026-11-11 | 2026-11-12 | B2.33 71 16.85, B2.33 71 16.81 | 91.32d | 0d | Labor [62.37 h]; Foreman [31.18 h]; Operator [62.37 h]; Boom Truck [32 h]; Electrician [31.18 h]; Street Lighting Feeder pillars, work shall include earthing for the lighting pillars. [1] | 16,342.35 | 0.00307259119104481 | Cons. | Z3 | SL | Cons | Cables | allElec | SUB.C | Cust. Rd 02 | SL |
| B2.33 71 26 043 |  | KWH meter mounting a frame installation | 1d | 2026-11-14 | 2026-11-14 | B2.33 71 26 032, B2.33 71 26 042, B2.33 71 26 041 | 91.32d | 6.32d | Labor [46.78 h]; Foreman [23.39 h]; Operator [46.78 h]; Boom Truck [24 h]; Supply and installation of KWH meter mounting a frame only [6] | 52,153.33 | 0.00874002310873136 | Cons. | Z3 | SL | Cons | Cables | allElec | SUB.C | Cust. Rd 02 | SL |
|  | Earthing | **Earthing** |  | 2026-11-11 | 2026-12-19 |  |  |  |  |  |  |  |  |  |  |  |  |  |  |  |
| B2.33 71 19 41 |  | Land Adjustment | 3d | 2026-11-11 | 2026-11-14 | B2.33 71 16.85, B2.33 71 16.81, B2.33 71 19 38 | 89.32d | 0d | Labor [46.78 h]; Foreman [23.39 h]; Operator [31.18 h]; Surveyor [7.8 h]; Surveyor Helper [7.8 h]; Excavator (With Bucket) [24 h]; Water Tanker [24 h]; Dump Truck [24 h]; Roller Compactor [24 h]; SL Earthing Including lighting poles circuits [0.45] | 904.39 | 0.000454679838542865 | Cons. | Z3 | SL | Cons | Cables | allElec | SUB.C | Cust. Rd 02 | SL |
| B2.33 71 19 42 |  | Earth Rods & Conduits | 1d | 2026-11-15 | 2026-11-15 | B2.33 71 19 41 | 89.32d | 27d | Labor [46.78 h]; Foreman [23.39 h]; Electrician [23.39 h]; SL Earthing Including lighting poles circuits [1.33] | 2,672.96 | 0.00134383152280447 | Cons. | Z3 | SL | Cons | Cables | allElec | SUB.C | Cust. Rd 02 | SL |
| B2.33 71 19 43 |  | Backfilling | 2d | 2026-12-17 | 2026-12-19 | B2.33 71 19 42, B2.33 71 19 152, B2.33 71 00 02 66, B2.33 71 19 25 | 62.32d | 9.41d | Labor [93.55 h]; Foreman [46.78 h]; Operator [93.55 h]; Surveyor [46.78 h]; Surveyor Helper [46.78 h]; Loader [48 h]; Water Tanker [48 h]; Dump Truck [48 h]; Plate Compactor [48 h]; SL Earthing Including lighting poles circuits [0.45] | 904.39 | 0.000454679838542865 | Cons. | Z3 | SL | Cons | Cables | allElec | SUB.C | Cust. Rd 02 | SL |
|  | Telecommunication | **Telecommunication Network** |  | 2026-10-28 | 2026-11-21 |  |  |  |  |  |  |  |  |  |  |  |  |  |  |  |
|  | Ducts | **Ducts** |  | 2026-10-28 | 2026-11-15 |  |  |  |  |  |  |  |  |  |  |  |  |  |  |  |
|  | (6*50mm) | **Size (6*50mm) HDPE ducts** |  | 2026-10-28 | 2026-11-07 |  |  |  |  |  |  |  |  |  |  |  |  |  |  |  |
| B2.1.33 81 26.132 |  | Excavation | 2d | 2026-10-28 | 2026-10-31 | B2.33 71 00 02 139, B2.33 71 00 02 136 | 41.98d | 0d | Labor [31.18 h]; Foreman [15.59 h]; Operator [31.18 h]; Surveyor [15.59 h]; Surveyor Helper [15.59 h]; Excavator (With Bucket) [16 h]; Water Tanker [16 h]; Dump Truck [16 h]; Plate Compactor [16 h]; (6*50mm) HDPE ducts [125.82] | 35,460.35 | 0.00690393952512995 | Cons. | Z3 | Telecom | Cons | DCT&MNH | allElec | SUB.C | Cust. Rd 02 | TEL |
| B2.1.33 81 26.133 |  | HDPE Pipe, Shuttering, Steel Fixing & Conc. Cast | 4d | 2026-10-31 | 2026-11-04 | B2.1.33 81 26.132 | 77.98d | 0d | Labor [62.37 h]; Laboratory Officer [31.18 h]; Carpenter [31.18 h]; Steelfixer [31.18 h]; Mason [31.18 h]; Surveyor [31.18 h]; Surveyor Helper [31.18 h]; (6*50mm) HDPE ducts [377.45] | 106,381.04 | 0.0207118185753898 | Cons. | Z3 | Telecom | Cons | DCT&MNH | allElec | SUB.C | Cust. Rd 02 | TEL |
| B2.1.33 81 26.134 |  | Backfilling & Warrning Tape | 2d | 2026-11-04 | 2026-11-07 | B2.1.33 81 26.133, B2.1.33 81 26.13_R | 77.98d | 4d | Labor [62.37 h]; Foreman [31.18 h]; Operator [124.74 h]; Surveyor [31.18 h]; Surveyor Helper [31.18 h]; Loader [32 h]; Water Tanker [32 h]; Dump Truck [32 h]; Plate Compactor [32 h]; Roller Compactor [32 h]; (6*50mm) HDPE ducts [125.82] | 35,460.35 | 0.00690393952512995 | Cons. | Z3 | Telecom | Cons | DCT&MNH | allElec | SUB.C | Cust. Rd 02 | TEL |
|  | (6*50mm+2*32mm) | **Size (6*50mm+2*32mm) HDPE ducts** |  | 2026-10-31 | 2026-11-15 |  |  |  |  |  |  |  |  |  |  |  |  |  |  |  |
| B2.1.33 81 26.135 |  | Excavation | 2d | 2026-10-31 | 2026-11-02 | B2.1.33 81 26.132 | 41.98d | 0d | Labor [31.18 h]; Foreman [15.59 h]; Operator [31.18 h]; Surveyor [15.59 h]; Surveyor Helper [15.59 h]; Excavator (With Bucket) [16 h]; Water Tanker [16 h]; Dump Truck [16 h]; Plate Compactor [16 h]; (6*50mm+2*32mm) HDPE ducts [48.51] | 21,251.23 | 0.00243727564627162 | Cons. | Z3 | Telecom | Cons | DCT&MNH | allElec | SUB.C | Cust. Rd 02 | TEL |
| B2.1.33 81 26.136 |  | HDPE Pipe, Shuttering, Steel Fixing & Conc. Cast | 3d | 2026-11-02 | 2026-11-05 | B2.1.33 81 26.135 | 92.98d | 5.66d | Labor [46.78 h]; Laboratory Officer [23.39 h]; Carpenter [23.39 h]; Steelfixer [23.39 h]; Mason [23.39 h]; Surveyor [23.39 h]; Surveyor Helper [23.39 h]; (6*50mm+2*32mm) HDPE ducts [145.49] | 63,742.79 | 0.00731057705386804 | Cons. | Z3 | Telecom | Cons | DCT&MNH | allElec | SUB.C | Cust. Rd 02 | TEL |
| B2.1.33 81 26.137 |  | Backfilling & Warrning Tape | 3d | 2026-11-12 | 2026-11-15 | B2.1.33 81 26.136, B2.1.33 81 26.62 SS, B2.33 71 00.217 SS | 87.32d | 26d | Labor [46.78 h]; Foreman [23.39 h]; Operator [93.55 h]; Surveyor [23.39 h]; Surveyor Helper [23.39 h]; Loader [24 h]; Water Tanker [24 h]; Dump Truck [24 h]; Plate Compactor [24 h]; Roller Compactor [24 h]; (6*50mm+2*32mm) HDPE ducts [48.51] | 21,251.23 | 0.00243727564627162 | Cons. | Z3 | Telecom | Cons | DCT&MNH | allElec | SUB.C | Cust. Rd 02 | TEL |
|  | (6*50mm+4*32mm) | **Size (6*50mm+4*32mm) HDPE ducts** |  | 2026-11-02 | 2026-11-11 |  |  |  |  |  |  |  |  |  |  |  |  |  |  |  |
| B2.1.33 81 26.138 |  | Excavation | 2d | 2026-11-02 | 2026-11-04 | B2.1.33 81 26.135 | 41.98d | 0d | Labor [31.18 h]; Foreman [15.59 h]; Operator [31.18 h]; Surveyor [15.59 h]; Surveyor Helper [15.59 h]; Excavator (With Bucket) [16 h]; Water Tanker [16 h]; Dump Truck [16 h]; Plate Compactor [16 h]; (6*50mm+4*32mm) HDPE ducts [15] | 7,441.11 | 0.00340443051603132 | Cons. | Z3 | Telecom | Cons | DCT&MNH | allElec | SUB.C | Cust. Rd 02 | TEL |
| B2.1.33 81 26.139 |  | HDPE Pipe, Shuttering, Steel Fixing & Conc. Cast | 3d | 2026-11-04 | 2026-11-08 | B2.1.33 81 26.138 | 90.98d | 0d | Labor [46.78 h]; Laboratory Officer [23.39 h]; Carpenter [23.39 h]; Steelfixer [23.39 h]; Mason [23.39 h]; Surveyor [23.39 h]; Surveyor Helper [23.39 h]; (6*50mm+4*32mm) HDPE ducts [45] | 22,323.32 | 0.010213291548094 | Cons. | Z3 | Telecom | Cons | DCT&MNH | allElec | SUB.C | Cust. Rd 02 | TEL |
| B2.1.33 81 26.140 |  | Backfilling & Warrning Tape | 3d | 2026-11-08 | 2026-11-11 | B2.1.33 81 26.139 | 90.98d | 29.66d | Labor [46.78 h]; Foreman [23.39 h]; Operator [93.55 h]; Surveyor [23.39 h]; Surveyor Helper [23.39 h]; Loader [24 h]; Water Tanker [24 h]; Dump Truck [24 h]; Plate Compactor [24 h]; Roller Compactor [24 h]; (6*50mm+4*32mm) HDPE ducts [15] | 7,441.11 | 0.00340443051603132 | Cons. | Z3 | Telecom | Cons | DCT&MNH | allElec | SUB.C | Cust. Rd 02 | TEL |

| ID | WBS | Activity | Duration | Start | Finish | Predecessors | Total float | Free float | Resources | Cost | Weight % | DMM2 Weekly Progress | DMM2 Zones | Networks & Stations | DMM2 Phases | Networks Components | All Electrical Scope | Subcontractors works | Dmm2 Roads | Yellow Sheet |
| --- | --- | --- | --- | --- | --- | --- | --- | --- | --- | --- | --- | --- | --- | --- | --- | --- | --- | --- | --- | --- |
|  | (2*32mm) | **Size (2*32mm) HDPE ducts** |  | 2026-11-04 | 2026-11-12 |  |  |  |  |  |  |  |  |  |  |  |  |  |  |  |
| B2.1.33 81 26.141 |  | Excavation | 2d | 2026-11-04 | 2026-11-07 | B2.1.33 81 26.138 | 41.98d | 0d | Labor [31.18 h]; Foreman [15.59 h]; Operator [31.18 h]; Surveyor [15.59 h]; Surveyor Helper [15.59 h]; Excavator (With Bucket) [16 h]; Water Tanker [16 h]; Dump Truck [16 h]; Plate Compactor [16 h]; (2*32mm) HDPE ducts [8.6] | 1,344.05 | 0.000194889802563824 | Cons. | Z3 | Telecom | Cons | DCT&MNH | allElec | SUB.C | Cust. Rd 02 | TEL |
| B2.1.33 81 26.142 |  | HDPE Pipe, Shuttering, Steel Fixing & Conc. Cast | 2d | 2026-11-07 | 2026-11-09 | B2.1.33 81 26.141 | 42.98d | 0d | Labor [31.18 h]; Laboratory Officer [15.59 h]; Carpenter [15.59 h]; Steelfixer [15.59 h]; Mason [15.59 h]; Surveyor [15.59 h]; Surveyor Helper [15.59 h]; (2*32mm) HDPE ducts [25.8] | 4,032.14 | 0.000584669407691468 | Cons. | Z3 | Telecom | Cons | DCT&MNH | allElec | SUB.C | Cust. Rd 02 | TEL |
| B2.1.33 81 26.143 |  | Backfilling & Warrning Tape | 3d | 2026-11-09 | 2026-11-12 | B2.1.33 81 26.142 | 42.98d | 1d | Labor [46.78 h]; Foreman [23.39 h]; Operator [93.55 h]; Surveyor [23.39 h]; Surveyor Helper [23.39 h]; Loader [24 h]; Water Tanker [24 h]; Dump Truck [24 h]; Plate Compactor [24 h]; Roller Compactor [24 h]; (2*32mm) HDPE ducts [8.6] | 1,344.05 | 0.000194889802563824 | Cons. | Z3 | Telecom | Cons | DCT&MNH | allElec | SUB.C | Cust. Rd 02 | TEL |
|  | (4*32mm) | **Size (4*32mm) HDPE ducts** |  | 2026-11-04 | 2026-11-12 |  |  |  |  |  |  |  |  |  |  |  |  |  |  |  |
| B2.1.33 81 26.144 |  | Excavation | 2d | 2026-11-04 | 2026-11-07 | B2.1.33 81 26.141 SS | 41.98d | 0d | Labor [31.18 h]; Foreman [15.59 h]; Operator [31.18 h]; Surveyor [15.59 h]; Surveyor Helper [15.59 h]; Excavator (With Bucket) [16 h]; Water Tanker [16 h]; Dump Truck [16 h]; Plate Compactor [16 h]; (4*32mm) HDPE ducts [5.13] | 1,099.7 | 0.000169743608400202 | Cons. | Z3 | Telecom | Cons | DCT&MNH | allElec | SUB.C | Cust. Rd 02 | TEL |
| B2.1.33 81 26.145 |  | HDPE Pipe, Shuttering, Steel Fixing & Conc. Cast | 2d | 2026-11-07 | 2026-11-09 | B2.1.33 81 26.144 | 91.98d | 0d | Labor [31.18 h]; Laboratory Officer [15.59 h]; Carpenter [15.59 h]; Steelfixer [15.59 h]; Mason [15.59 h]; Surveyor [15.59 h]; Surveyor Helper [15.59 h]; (4*32mm) HDPE ducts [15.4] | 3,299.51 | 0.000509292104481614 | Cons. | Z3 | Telecom | Cons | DCT&MNH | allElec | SUB.C | Cust. Rd 02 | TEL |
| B2.1.33 81 26.146 |  | Backfilling & Warrning Tape | 3d | 2026-11-09 | 2026-11-12 | B2.1.33 81 26.145, B2.1.33 81 26.23_R | 91.98d | 30.66d | Labor [46.78 h]; Foreman [23.39 h]; Operator [93.55 h]; Surveyor [23.39 h]; Surveyor Helper [23.39 h]; Loader [24 h]; Water Tanker [24 h]; Dump Truck [24 h]; Plate Compactor [24 h]; Roller Compactor [24 h]; (4*32mm) HDPE ducts [5.13] | 1,099.7 | 0.000169743608400202 | Cons. | Z3 | Telecom | Cons | DCT&MNH | allElec | SUB.C | Cust. Rd 02 | TEL |
|  | (6*50mm+6*32mm) | **Size (6*50mm+6*32mm) HDPE ducts** |  | 2026-11-07 | 2026-11-15 |  |  |  |  |  |  |  |  |  |  |  |  |  |  |  |
| B2.1.33 81 26.147 |  | Excavation | 2d | 2026-11-07 | 2026-11-09 | B2.1.33 81 26.144 | 41.98d | 0d | Labor [31.18 h]; Foreman [15.59 h]; Operator [31.18 h]; Surveyor [15.59 h]; Surveyor Helper [15.59 h]; Excavator (With Bucket) [16 h]; Water Tanker [16 h]; Dump Truck [16 h]; Plate Compactor [16 h]; (6*50mm+6*32mm) HDPE ducts [1] | 538.74 | 0.00047345125512784 | Cons. | Z3 | Telecom | Cons | DCT&MNH | allElec | SUB.C | Cust. Rd 02 | TEL |
| B2.1.33 81 26.148 |  | HDPE Pipe, Shuttering, Steel Fixing & Conc. Cast | 2d | 2026-11-09 | 2026-11-11 | B2.1.33 81 26.147 | 73.98d | 0d | Labor [31.18 h]; Laboratory Officer [15.59 h]; Carpenter [15.59 h]; Steelfixer [15.59 h]; Mason [15.59 h]; Surveyor [15.59 h]; Surveyor Helper [15.59 h]; (6*50mm+6*32mm) HDPE ducts [3] | 1,617.98 | 0.00142189094478329 | Cons. | Z3 | Telecom | Cons | DCT&MNH | allElec | SUB.C | Cust. Rd 02 | TEL |
| B2.1.33 81 26.149 |  | Backfilling & Warrning Tape | 3d | 2026-11-11 | 2026-11-15 | B2.1.33 81 26.148, B2.1.33 81 26.134 | 73.98d | 7.66d | Labor [46.78 h]; Foreman [23.39 h]; Operator [93.55 h]; Surveyor [23.39 h]; Surveyor Helper [23.39 h]; Loader [24 h]; Water Tanker [24 h]; Dump Truck [24 h]; Plate Compactor [24 h]; Roller Compactor [24 h]; (6*50mm+6*32mm) HDPE ducts [1] | 538.74 | 0.00047345125512784 | Cons. | Z3 | Telecom | Cons | DCT&MNH | allElec | SUB.C | Cust. Rd 02 | TEL |
|  | Manholes | **Manholes** |  | 2026-11-09 | 2026-11-21 |  |  |  |  |  |  |  |  |  |  |  |  |  |  |  |
|  | Manhole Type 1 | **Manhole Type 1** |  | 2026-11-09 | 2026-11-17 |  |  |  |  |  |  |  |  |  |  |  |  |  |  |  |
| B2.31 23 00.623 |  | Excavation | 2d | 2026-11-09 | 2026-11-11 | B2.1.33 81 26.147 | 41.98d | 0d | Labor [31.18 h]; Foreman [15.59 h]; Operator [31.18 h]; Surveyor [15.59 h]; Surveyor Helper [15.59 h]; Excavator (With Bucket) [16 h]; Water Tanker [16 h]; Dump Truck [16 h]; Plate Compactor [16 h]; Manhole Type 1 [1.24] | 8,766.4 | 0.00167335317103356 | Cons. | Z3 | Telecom | Cons | DCT&MNH | allElec | SUB.C | Cust. Rd 02 | TEL |
| B2.33 71 00.254 |  | Manhole Installation | 2d | 2026-11-11 | 2026-11-14 | B2.31 23 00.623 | 41.98d | 0d | Labor [31.18 h]; Laboratory Officer [15.59 h]; Carpenter [15.59 h]; Steelfixer [15.59 h]; Mason [15.59 h]; Surveyor [15.59 h]; Surveyor Helper [15.59 h]; Manhole Type 1 [3.72] | 26,299.19 | 0.00502005951310069 | Cons. | Z3 | Telecom | Cons | DCT&MNH | allElec | SUB.C | Cust. Rd 02 | TEL |
| B2.33 71 00.255 |  | Backfilling & Warrning Tape | 3d | 2026-11-14 | 2026-11-17 | B2.33 71 00.254, B2.1.02 41 00.015_R, B2.1.33 81 26.143 | 41.98d | 0d | Labor [46.78 h]; Foreman [23.39 h]; Operator [93.55 h]; Surveyor [23.39 h]; Surveyor Helper [23.39 h]; Loader [24 h]; Water Tanker [24 h]; Dump Truck [24 h]; Plate Compactor [24 h]; Roller Compactor [24 h]; Manhole Type 1 [1.24] | 8,766.4 | 0.00167335317103356 | Cons. | Z3 | Telecom | Cons | DCT&MNH | allElec | SUB.C | Cust. Rd 02 | TEL |
|  | Manhole Type 2 | **Manhole Type 2** |  | 2026-11-11 | 2026-11-21 |  |  |  |  |  |  |  |  |  |  |  |  |  |  |  |
| B2.31 23 00.625 |  | Excavation | 2d | 2026-11-11 | 2026-11-14 | B2.31 23 00.623 | 43.98d | 0d | Labor [31.18 h]; Foreman [15.59 h]; Operator [31.18 h]; Surveyor [15.59 h]; Surveyor Helper [15.59 h]; Excavator (With Bucket) [16 h]; Water Tanker [16 h]; Dump Truck [16 h]; Plate Compactor [16 h]; Manhole Type 2 [0.52] | 3,287.69 | 0.000634453248743172 | Cons. | Z3 | Telecom | Cons | DCT&MNH | allElec | SUB.C | Cust. Rd 02 | TEL |
| B2.33 71 00.258 |  | Manhole Installation | 3d | 2026-11-14 | 2026-11-17 | B2.31 23 00.625 | 43.98d | 0d | Labor [31.18 h]; Laboratory Officer [15.59 h]; Carpenter [15.59 h]; Steelfixer [15.59 h]; Mason [15.59 h]; Surveyor [15.59 h]; Surveyor Helper [15.59 h]; Manhole Type 2 [1.56] | 9,863.09 | 0.00190336462403523 | Cons. | Z3 | Telecom | Cons | DCT&MNH | allElec | SUB.C | Cust. Rd 02 | TEL |
| B2.33 71 00.259 |  | Backfilling & Warrning Tape | 3d | 2026-11-17 | 2026-11-21 | B2.33 71 00.258 | 43.98d | 0d | Labor [46.78 h]; Foreman [23.39 h]; Operator [93.55 h]; Surveyor [23.39 h]; Surveyor Helper [23.39 h]; Loader [24 h]; Water Tanker [24 h]; Dump Truck [24 h]; Plate Compactor [24 h]; Roller Compactor [24 h]; Manhole Type 2 [0.52] | 3,287.69 | 0.000634453248743172 | Cons. | Z3 | Telecom | Cons | DCT&MNH | allElec | SUB.C | Cust. Rd 02 | TEL |
|  | Crossing Ducts | **Road Crossing Ducts** |  | 2026-11-09 | 2026-11-17 |  |  |  |  |  |  |  |  |  |  |  |  |  |  |  |
|  | 1 | **Size (6X50mm) HDPE** |  | 2026-11-09 | 2026-11-17 |  |  |  |  |  |  |  |  |  |  |  |  |  |  |  |
| B2.31 23 00.622 |  | Excavation | 2d | 2026-11-09 | 2026-11-11 | B2.1.33 81 26.147 | 73.98d | 0d | Labor [31.18 h]; Foreman [15.59 h]; Operator [31.18 h]; Surveyor [15.59 h]; Surveyor Helper [15.59 h]; Excavator (With Bucket) [16 h]; Water Tanker [16 h]; Dump Truck [16 h]; Plate Compactor [16 h]; Road crossing ducts, (6*50mm) HDPE [7.13] | 2,221.93 | 0.000381434848303997 | Cons. | Z3 | Telecom | Cons | DCT&MNH | allElec | SUB.C | Cust. Rd 02 | TEL |
| B2.33 71 00.252 |  | Shuttering, Steel Fixing Incl. UPVC Pipe & Conc. Cast | 2d | 2026-11-11 | 2026-11-14 | B2.31 23 00.622, B1.2.31 23 16.01.13 | 73.98d | 0d | Labor [31.18 h]; Laboratory Officer [15.59 h]; Carpenter [15.59 h]; Steelfixer [15.59 h]; Mason [15.59 h]; Surveyor [15.59 h]; Surveyor Helper [15.59 h]; Road crossing ducts, (6*50mm) HDPE [21.37] | 6,660.61 | 0.00114341541939146 | Cons. | Z3 | Telecom | Cons | DCT&MNH | allElec | SUB.C | Cust. Rd 02 | TEL |
| B2.33 71 00.253 |  | Backfilling & Warrning Tape | 3d | 2026-11-14 | 2026-11-17 | B2.33 71 00.252 | 73.98d | 7.66d | Labor [46.78 h]; Foreman [23.39 h]; Operator [93.55 h]; Surveyor [23.39 h]; Surveyor Helper [23.39 h]; Loader [24 h]; Water Tanker [24 h]; Dump Truck [24 h]; Plate Compactor [24 h]; Roller Compactor [24 h]; Road crossing ducts, (6*50mm) HDPE [7.13] | 2,221.93 | 0.000381434848303997 | Cons. | Z3 | Telecom | Cons | DCT&MNH | allElec | SUB.C | Cust. Rd 02 | TEL |

| ID | WBS | Activity | Duration | Start | Finish | Predecessors | Complete | Planned start | Planned finish | Total float | Free float | Resources | Cost | Actual cost | Weight % | DMM2 Weekly Progress | DMM2 Zones | Networks & Stations | DMM2 Phases | Dmm2 Roads | Networks Components | Yellow Sheet |
| --- | --- | --- | --- | --- | --- | --- | --- | --- | --- | --- | --- | --- | --- | --- | --- | --- | --- | --- | --- | --- | --- | --- |
|  | Earth & Road Works | **Earth & Road Works** |  | 2025-12-12 | 2026-12-02 |  |  |  |  |  |  |  |  |  |  |  |  |  |  |  |  |  |
|  | Earth Works | **Earth Works** |  | 2025-12-12 | 2026-05-06 |  |  |  |  |  |  |  |  |  |  |  |  |  |  |  |  |  |
| B1.2.31 23 16.01.13 |  | Roadway Excavation | 113.04d | 2025-12-12 A | 2026-05-06 A | DMM2-Eng-MS-78 | 100% | 2025-12-13 | 2026-05-06 |  |  | Roadway Excavation for cuttings (all types of soil) [21573.7]; Labor [28.35 h]; Foreman [14.17 h]; Operator [28.35 h]; Surveyor [14.17 h]; Surveyor Helper [14.17 h]; Excavator (With Bucket) [16 h]; Water Tanker [16 h]; Dump Truck [16 h] | 322,009.15 | 322,009.15 | 3.93212756831206E-005 | Cons. | Z3 | Roads | Cons | Cust. Rd 02 |  |  |
| B1.2.31 23 23.01.13 |  | Embankment Backfiling | 113.03d | 2025-12-12 A | 2026-05-06 A | B1.2.31 23 16.01.13 | 100% | 2025-12-13 | 2026-05-06 |  |  | Embankment backfiling [10551.9]; Labor [42.52 h]; Foreman [21.26 h]; Operator [42.52 h]; Surveyor [21.26 h]; Surveyor Helper [21.26 h]; Loader [24 h]; Water Tanker [24 h]; Dump Truck [24 h]; Plate Compactor [24 h]; Roller Compactor [24 h] | 287,201.83 | 287,201.83 | 0.0381170483728658 | Cons. | Z3 | Roads | Cons | Cust. Rd 02 |  |  |
|  | Earth Layers | **Earth Layers** |  | 2026-04-20 | 2026-10-25 |  |  |  |  |  |  |  |  |  |  |  |  |  |  |  |  |  |
| B1.2.32 11 13.01.13 |  | Subgrade (82.00% Completed) | 123.97d | 2026-04-20 A | 2026-09-15 A | B1.2.31 23 23.01.13 | 100% |  |  |  |  | Subgrade [763.17]; Labor [25.57 h]; Foreman [12.79 h]; Operator [25.57 h]; Surveyor [12.79 h]; Surveyor Helper [12.79 h]; Grader [13.12 h]; Loader [13.12 h]; Water Tanker [13.12 h]; Dump Truck [13.12 h]; Plate Compactor [13.12 h]; Roller Compactor [13.12 h] | 22,782.13 | 22,782.13 | 0.0162920651976381 | Cons. | Z3 | Roads | Cons | Cust. Rd 02 | Roads | Sub |
| B1.2.32 11 23.01.13 |  | Aggregate Base Course (48.00% Completed) | 88.84d | 2026-06-04 A | 2026-09-15 A | B1.2.32 11 13.01.13 SS | 100% |  |  |  |  | Aggregate base course [297.82]; Labor [14.97 h]; Foreman [7.48 h]; Operator [14.97 h]; Surveyor [7.48 h]; Surveyor Helper [7.48 h]; Grader [7.68 h]; Loader [7.68 h]; Water Tanker [7.68 h]; Dump Truck [7.68 h]; Plate Compactor [7.68 h]; Roller Compactor [7.68 h] | 25,887.32 | 25,887.32 | 0.0307067601890613 | Cons. | Z3 | Roads | Cons | Cust. Rd 02 | Roads | Agg |
| B1.2.32 11 13.01.13_R |  | Subgrade(Rem) | 2d | 2026-10-24 | 2026-10-25 | B1.2.31 23 23.01.13, B1.2.32 11 13.01.13, B1.2.32 11 13.01.12_R |  |  |  | 50.18d | 0d | Subgrade [167.52]; Labor [5.61 h]; Foreman [2.81 h]; Operator [5.61 h]; Surveyor [2.81 h]; Surveyor Helper [2.81 h]; Grader [2.88 h]; Loader [2.88 h]; Water Tanker [2.88 h]; Dump Truck [2.88 h]; Plate Compactor [2.88 h]; Roller Compactor [2.88 h] | 5,000.96 |  | 0.0162920651976381 | Cons. | Z3 | Roads | Cons | Cust. Rd 02 | Roads | Sub |
| B1.2.32 11 23.01.13_R |  | Aggregate Base Course(Rem) | 1.04d | 2026-10-24 | 2026-10-25 | B1.2.32 11 13.01.13_R SS, B1.2.32 11 23.01.13 |  |  |  | 50.18d | 0d | Aggregate base course [322.64]; Labor [16.22 h]; Foreman [8.11 h]; Operator [16.22 h]; Surveyor [8.11 h]; Surveyor Helper [8.11 h]; Grader [8.32 h]; Loader [8.32 h]; Water Tanker [8.32 h]; Dump Truck [8.32 h]; Plate Compactor [8.32 h]; Roller Compactor [8.32 h] | 28,044.59 |  | 0.0307067601890613 | Cons. | Z3 | Roads | Cons | Cust. Rd 02 | Roads | Agg |
|  | Interlock | **Interlock** |  | 2026-10-22 | 2026-10-26 |  |  |  |  |  |  |  |  |  |  |  |  |  |  |  |  |  |
| B1.2.32 14 13.13.13 |  | 60mm thick - Interlocking Block Pavers | 3d | 2026-10-22 | 2026-10-26 | DMM2-Proc-Delv-7408 |  |  |  | 20.82d | 0d | 60mm thick - Interlocking block pavers for sidewalks and medians [221.5]; Labor [46.78 h]; Foreman [23.39 h]; Mason [23.39 h]; Operator [46.78 h]; JCB [24 h] | 14,780.48 |  | 0.00820573401929655 | Cons. | Z3 | Roads | Cons | Cust. Rd 02 | Roads |  |
|  | Curbstone | **Curbstone** |  | 2026-10-26 | 2026-11-22 |  |  |  |  |  |  |  |  |  |  |  |  |  |  |  |  |  |
|  | Pre Install | **Pre-Installation** |  | 2026-10-26 | 2026-11-05 |  |  |  |  |  |  |  |  |  |  |  |  |  |  |  |  |  |
| B2.31 23 00.361 |  | Excavation | 2d | 2026-10-26 | 2026-10-28 | B1.2.32 14 13.13.13 |  |  |  | 20.82d | 0d | Curb Stone, Type K1 [36.67]; Dropped Curb, Type K3 [0.74]; Edge Curb, Type K4 [26.26]; Heel Curb, Type K5 [17.6]; Transition Curb [0.22]; Labor [31.18 h]; Foreman [15.59 h]; Operator [31.18 h]; Surveyor [15.59 h]; Surveyor Helper [15.59 h]; JCB [16 h]; Water Tanker [16 h]; Dump Truck [16 h]; Plate Compactor [16 h] | 5,957.54 |  | 0.00336465748385301 | Cons. | Z3 | Roads | Cons | Cust. Rd 02 | Roads |  |
| B1.2.32 14 13.13.213 |  | PCC | 3d | 2026-10-28 | 2026-11-01 | B2.31 23 00.361 |  |  |  | 34.82d | 0d | Curb Stone, Type K1 [36.67]; Dropped Curb, Type K3 [0.74]; Edge Curb, Type K4 [26.26]; Heel Curb, Type K5 [17.6]; Transition Curb [0.22]; Labor [46.78 h]; Mason [23.39 h]; Surveyor [23.39 h]; Surveyor Helper [23.39 h] | 5,957.54 |  | 0.00336465748385301 | Cons. | Z3 | Roads | Cons | Cust. Rd 02 | Roads |  |
| 32 16 13.0013 |  | Haunching | 4d | 2026-11-01 | 2026-11-05 | B1.2.32 14 13.13.213 |  |  |  | 34.82d | 0d | Curb Stone, Type K1 [36.67]; Dropped Curb, Type K3 [0.74]; Edge Curb, Type K4 [26.26]; Heel Curb, Type K5 [17.6]; Transition Curb [0.22]; Labor [62.37 h]; Carpenter [31.18 h]; Mason [31.18 h]; Surveyor [31.18 h]; Surveyor Helper [31.18 h] | 5,957.54 |  | 0.00336465748385301 | Cons. | Z3 | Roads | Cons | Cust. Rd 02 | Roads |  |
|  | Installation | **Installation** |  | 2026-11-05 | 2026-11-09 |  |  |  |  |  |  |  |  |  |  |  |  |  |  |  |  |  |
| B1.2.32 16.13.01.13 |  | Curb Stone, Type K1 | 3d | 2026-11-05 | 2026-11-09 | 32 16 13.0013 |  |  |  | 34.82d | 0d | Curb Stone, Type K1 [110.02]; Labor [46.78 h]; Foreman [23.39 h]; Mason [23.39 h]; Operator [46.78 h]; Surveyor [23.39 h]; Surveyor Helper [23.39 h]; JCB [24 h] | 8,307.55 |  | 0.00489990501206015 | Cons. | Z3 | Roads | Cons | Cust. Rd 02 | Roads |  |
| B1.2.32 16.13.02.12 |  | Dropped Curb, Type K3 | 2d | 2026-11-07 | 2026-11-09 | B1.2.32 16.13.01.13 FF, 32 16 13.0013 |  |  |  | 34.82d | 0d | Dropped Curb, Type K3 [1.85]; Labor [31.18 h]; Foreman [15.59 h]; Mason [15.59 h]; Operator [31.18 h]; Surveyor [15.59 h]; Surveyor Helper [15.59 h]; JCB [16 h] | 149.19 |  | 8.7189907202018E-005 | Cons. | Z3 | Roads | Cons | Cust. Rd 02 | Roads |  |
| B1.2.32 16.13.03.13 |  | Edge Curb, Type K4 | 2d | 2026-11-07 | 2026-11-09 | B1.2.32 16.13.02.12 FF, 32 16 13.0013 |  |  |  | 34.82d | 0d | Edge Curb, Type K4 [78.36]; Labor [31.18 h]; Foreman [15.59 h]; Mason [15.59 h]; Operator [31.18 h]; Surveyor [15.59 h]; Surveyor Helper [15.59 h]; JCB [16 h] | 5,916.78 |  | 0.00325842587777498 | Cons. | Z3 | Roads | Cons | Cust. Rd 02 | Roads |  |
| B1.2.32 16.13.0413 |  | Heel Curb, Type K5 | 2d | 2026-11-07 | 2026-11-09 | B1.2.32 16.13.03.13 FF, 32 16 13.0013 |  |  |  | 34.82d | 0d | Heel Curb, Type K5 [74.61]; Labor [31.18 h]; Foreman [15.59 h]; Mason [15.59 h]; Operator [31.18 h]; Surveyor [15.59 h]; Surveyor Helper [15.59 h]; JCB [16 h] | 4,782.31 |  | 0.0025169875074353 | Cons. | Z3 | Roads | Cons | Cust. Rd 02 | Roads |  |
| B1.2.32 16.13.05.12 |  | Transition Curb | 2d | 2026-11-07 | 2026-11-09 | B1.2.32 16.13.0413 FF, 32 16 13.0013 |  |  |  | 34.82d | 8.82d | Transition Curb [0.81]; Labor [31.18 h]; Foreman [15.59 h]; Mason [15.59 h]; Operator [31.18 h]; Surveyor [15.59 h]; Surveyor Helper [15.59 h]; JCB [16 h] | 65.12 |  | 3.9561855307557E-005 | Cons. | Z3 | Roads | Cons | Cust. Rd 02 | Roads |  |
|  | Finishing | **Finishing** |  | 2026-11-19 | 2026-11-22 |  |  |  |  |  |  |  |  |  |  |  |  |  |  |  |  |  |
| 32 16 13.013 |  | Finishing, Fareface | 2d | 2026-11-19 | 2026-11-22 | B1.2.32 16.13.01.13, B1.2.32 16.13.02.12, B1.2.32 16.13.03.13, B1.2.32 16.13.0413, B1.2.32 16.13.05.12, 32 16 13.06 |  |  |  | 26d | 0.18d | Curb Stone, Type K1 [24.45]; Dropped Curb, Type K3 [0.5]; Edge Curb, Type K4 [17.5]; Heel Curb, Type K5 [16.58]; Transition Curb [0.32]; Labor [31.18 h]; Mason [15.59 h] | 4,296.58 |  | 0.00241525683041397 | Cons. | Z3 | Roads | Cons | Cust. Rd 02 | Roads |  |

| ID | WBS | Activity | Duration | Start | Finish | Predecessors | Complete | Remaining | Planned start | Planned finish | Total float | Free float | Resources | Cost | Actual cost | Weight % | DMM2 Weekly Progress | DMM2 Zones | Networks & Stations | DMM2 Phases | Networks Components | Dmm2 Roads | Yellow Sheet | UNASCO | Subcontractors works |
| --- | --- | --- | --- | --- | --- | --- | --- | --- | --- | --- | --- | --- | --- | --- | --- | --- | --- | --- | --- | --- | --- | --- | --- | --- | --- |
|  | Asphalt Layers | **Asphalt Layers** |  | 2026-07-05 | 2026-11-28 |  |  |  |  |  |  |  |  |  |  |  |  |  |  |  |  |  |  |  |  |
| B1.2.32 11 26.01.13 |  | Bituminous Base Course including Prime Coat (MC1) and tack coat (RC2) (43.00% Completed) | 62.08d | 2026-07-05 A | 2026-09-15 A | B1.2.32 11 23.01.13 SS | 100% |  |  |  |  |  | Bituminous base course(Grading I - Class A) [182.8]; Labor [13.41 h]; Foreman [6.7 h]; Operator [13.41 h]; Surveyor [6.7 h]; Surveyor Helper [6.7 h]; Dump Truck [6.88 h]; Roller Compactor [6.88 h]; MC1/RC2 Sprayer [6.88 h] | 100,473.58 | 100,473.58 | 0.128895201435273 | Cons. | Z3 | Roads | Cons | Roads | Cust. Rd 02 | BBC |  |  |
| B1.2.32 11 26.01.13_R |  | Bituminous Base Course including Prime Coat (MC1) and tack coat (RC2)(Rem) | 1.14d | 2026-10-24 | 2026-10-25 | B1.2.32 11 23.01.13_R SS, B1.2.32 11 26.01.13 |  |  |  |  | 50.18d | 24.36d | Bituminous base course(Grading I - Class A) [242.32]; Labor [17.78 h]; Foreman [8.89 h]; Operator [17.78 h]; Surveyor [8.89 h]; Surveyor Helper [8.89 h]; Dump Truck [9.12 h]; Roller Compactor [9.12 h]; MC1/RC2 Sprayer [9.12 h] | 133,185.9 |  | 0.128895201435273 | Cons. | Z3 | Roads | Cons | Roads | Cust. Rd 02 | BBC |  |  |
| B1.2.32 12 16.01.13 |  | Bituminous concrete Wearing Course, including tack coat (RC2) | 5d | 2026-11-22 | 2026-11-28 | B1.2.32 11 26.01.13_R, B7.32 31 26.01-113, 32 16 13.013 |  |  |  |  | 25.82d | 0d | Bituminous concrete wearing course, after compaction(Grading I - Class A), including tack coat (RC2) [155.55]; Labor [31.18 h]; Foreman [15.59 h]; Operator [31.18 h]; Surveyor [15.59 h]; Surveyor Helper [15.59 h]; Dump Truck [16 h]; Roller Compactor [16 h]; MC1/RC2 Sprayer [16 h] | 91,779.04 |  | 0.0506023852271583 | Cons. | Z3 | Roads | Cons | Roads | Cust. Rd 02 | BWC |  |  |
|  | Pavement Marking | **Pavement Marking** |  | 2026-11-28 | 2026-11-30 |  |  |  |  |  |  |  |  |  |  |  |  |  |  |  |  |  |  |  |  |
| B1.2.32 17 23.01.13 |  | Retroreflective Thermoplastic White Traffic lines | 2d | 2026-11-28 | 2026-11-30 | B1.2.32 12 16.01.13 |  |  |  |  | 69.82d | 0d | Retroreflective Thermoplastic White Traffic lines [52.73]; Labor [46.78 h]; Mason [23.39 h]; Road Marking Machine [24 h] | 1,574.09 |  | 0.000791371454928008 | Cons. | Z3 | Roads | Cons | Roads | Cust. Rd 02 |  |  |  |
| B1.2.32 17 23.02.13 |  | Retroreflective Thermoplastic Yellow, Traffic lines | 2d | 2026-11-28 | 2026-11-30 | B1.2.32 12 16.01.13 |  |  |  |  | 69.82d | 0d | Retroreflective Thermoplastic Yellow, Traffic lines [25.27]; Labor [31.18 h]; Mason [15.59 h]; Road Marking Machine [16 h] | 754.44 |  | 0.000379294774735988 | Cons. | Z3 | Roads | Cons | Roads | Cust. Rd 02 |  |  |  |
|  | Traffic Signs | **Traffic Signs** |  | 2026-10-28 | 2026-12-02 |  |  |  |  |  |  |  |  |  |  |  |  |  |  |  |  |  |  |  |  |
|  | Pre Install | **Pre-Installation** |  | 2026-10-28 | 2026-11-02 |  |  |  |  |  |  |  |  |  |  |  |  |  |  |  |  |  |  |  |  |
| B2.31 23 00.371 |  | Excavation | 2d | 2026-10-28 | 2026-10-31 | B2.31 23 00.361 |  |  |  |  | 20.82d | 0d | Traffic signs, ground mounted, 1 Sheet Alumenium, (breakaway) Single post [0.47]; Ground mounted, 1 Sheet Alumenium powder coated UV printed, Single post [0.39]; Labor [31.18 h]; Foreman [15.59 h]; Operator [31.18 h]; Surveyor [15.59 h]; Surveyor Helper [15.59 h]; JCB [16 h]; Water Tanker [16 h]; Dump Truck [16 h]; Plate Compactor [16 h] | 959.71 |  | 0.000482493809278541 | Cons. | Z3 | Roads | Cons | Roads | Cust. Rd 02 |  |  |  |
| 10 14 53.013 |  | Foundation | 2d | 2026-10-31 | 2026-11-02 | B2.31 23 00.371 |  |  |  |  | 93.82d | 24d | Traffic signs, ground mounted, 1 Sheet Alumenium, (breakaway) Single post [0.47]; Ground mounted, 1 Sheet Alumenium powder coated UV printed, Single post [0.39]; Labor [31.18 h]; Carpenter [15.59 h]; Steelfixer [15.59 h]; Mason [15.59 h]; Surveyor [15.59 h]; Surveyor Helper [15.59 h] | 959.71 |  | 0.000482493809278541 | Cons. | Z3 | Roads | Cons | Roads | Cust. Rd 02 |  |  |  |
|  | Installation | **Installation** |  | 2026-11-30 | 2026-12-02 |  |  |  |  |  |  |  |  |  |  |  |  |  |  |  |  |  |  |  |  |
| B1.2.10 14 14.01.13 |  | Ground mounted, 1 Sheet Alumenium, Single post | 2d | 2026-11-30 | 2026-12-02 | B1.2.10 14 53.0113 SS, B1.2.32 17 23.01.13, B1.2.32 17 23.02.13, 10 14 53.013 |  |  |  |  | 69.82d | 10.82d | Ground mounted, 1 Sheet Alumenium powder coated UV printed, Single post [0.79]; Labor [31.18 h]; Foreman [15.59 h]; Operator [31.18 h]; JCB [16 h] | 881.59 |  | 0.000443221491480094 | Cons. | Z3 | Roads | Cons | Roads | Cust. Rd 02 |  |  |  |
| B1.2.10 14 53.0113 |  | 1 Sheet Alumenium, Single post | 2d | 2026-11-30 | 2026-12-02 | B1.2.32 17 23.01.13, B1.2.32 17 23.02.13, 10 14 53.013 |  |  |  |  | 69.82d | 0d | Traffic signs, ground mounted, 1 Sheet Alumenium, (breakaway) Single post [1]; Labor [31.18 h]; Foreman [15.59 h]; Operator [31.18 h]; JCB [16 h] | 1,115.94 |  | 0.000561038857131188 | Cons. | Z3 | Roads | Cons | Roads | Cust. Rd 02 |  |  |  |
|  | Landscape | **Landscape** |  | 2026-10-31 | 2026-11-22 |  |  |  |  |  |  |  |  |  |  |  |  |  |  |  |  |  |  |  |  |
|  | Fences | **Fences** |  | 2026-10-31 | 2026-11-22 |  |  |  |  |  |  |  |  |  |  |  |  |  |  |  |  |  |  |  |  |
|  | (ZATCA HCIS) | **Steel fence (ZATCA HCIS)** |  | 2026-10-31 | 2026-11-22 |  |  |  |  |  |  |  |  |  |  |  |  |  |  |  |  |  |  |  |  |
| B7.32 31 26.01-19 |  | Earthwork | 6d | 2026-10-31 | 2026-11-07 | B2.31 23 00.371 |  |  |  |  | 20.82d | 0d | Labor [46.78 h]; Foreman [23.39 h]; Operator [46.78 h]; Surveyor [23.39 h]; Surveyor Helper [23.39 h]; Excavator (With Bucket) [24 h]; Water Tanker [24 h]; Dump Truck [24 h]; Plate Compactor [24 h]; Steel fence (ZATCA HCIS) [116.81] | 25,743.45 |  | 0.0145109845928078 | Cons. | Z3 | Landscp | Cons | Fncs&Gt | Cust. Rd 02 | ZTK.Fns |  |  |
| B7.32 31 26.01-111 |  | Foundation | 7d | 2026-11-07 | 2026-11-15 | B7.32 31 26.01-19 |  |  |  |  | 20.82d | 0d | Labor [77.96 h]; Laboratory Officer [38.98 h]; Carpenter [38.98 h]; Steelfixer [38.98 h]; Mason [38.98 h]; Surveyor [38.98 h]; Surveyor Helper [38.98 h]; Steel fence (ZATCA HCIS) [116.81] | 25,743.45 |  | 0.0145109845928078 | Cons. | Z3 | Landscp | Cons | Fncs&Gt | Cust. Rd 02 | ZTK.Fns |  |  |
| B7.32 31 26.01-113 |  | Fence Installation | 6d | 2026-11-15 | 2026-11-22 | B7.32 31 26.01-111 |  |  |  |  | 20.82d | 0d | Labor [109.15 h]; Foreman [54.57 h]; Welder [54.57 h]; Mason [54.57 h]; Operator [109.15 h]; Boom Truck [56 h]; Welding Machine [56 h]; Steel fence (ZATCA HCIS) [545.12] | 120,133.48 |  | 0.0677164508164642 | Cons. | Z3 | Landscp | Cons | Fncs&Gt | Cust. Rd 02 | ZTK.Fns |  |  |
|  | Customs Rd 01 | **Customs Road 01** |  | 2025-12-11 | 2026-12-23 |  |  |  |  |  |  |  |  |  |  |  |  |  |  |  |  |  |  |  |  |
|  | Wet Networks | **Wet Networks** |  | 2026-04-02 | 2026-11-24 |  |  |  |  |  |  |  |  |  |  |  |  |  |  |  |  |  |  |  |  |
|  | Sewerage Network | **Sewerage Network** |  | 2026-04-02 | 2026-11-22 |  |  |  |  |  |  |  |  |  |  |  |  |  |  |  |  |  |  |  |  |
|  | GRP | **GRP Pipes** |  | 2026-04-02 | 2026-10-21 |  |  |  |  |  |  |  |  |  |  |  |  |  |  |  |  |  |  |  |  |
|  | 200 | **?150** |  | 2026-04-02 | 2026-10-21 |  |  |  |  |  |  |  |  |  |  |  |  |  |  |  |  |  |  |  |  |
|  | 1 | **Depth From 1.5m to 2.5m** |  | 2026-04-02 | 2026-10-21 |  |  |  |  |  |  |  |  |  |  |  |  |  |  |  |  |  |  |  |  |
| B5.33 31 00.01.02.28 |  | Pipe Laying (10.51% Completed) | 139d | 2026-04-02 A | 2026-09-15 A | B5.33 31 00.01.02.24, DMM2-Proc-Delv-4038 SS | 100% |  |  |  |  |  | Labor [4.91 h]; Foreman [2.46 h]; Plumber Helper [2.46 h]; Plumber [2.46 h]; Operator [2.46 h]; Surveyor [2.46 h]; Surveyor Helper [2.46 h]; Mobile Crane [2.52 h]; Sew Dia. 150mm Depth: 1.51m - 2.5m [3.7] | 1,063.72 | 1,063.72 | 0.00234567500332294 | Cons. | Z3 | Sew | Cons | GRPs | Cust. Rd 01 | Sew | CS.UNSC | SUB.C |
| B5.33 31 00.01.02.32 |  | Embedment & Test (10.42% Completed) | 136d | 2026-04-06 A | 2026-09-15 A | B5.33 31 00.01.02.28 FF | 100% |  |  |  |  |  | Labor [6.5 h]; Foreman [3.25 h]; Plumber Helper [3.25 h]; Plumber [3.25 h]; Operator [6.5 h]; Surveyor [3.25 h]; Surveyor Helper [3.25 h]; Loader [3.33 h]; Water Tanker [3.33 h]; Dump Truck [3.33 h]; Plate Compactor [3.33 h]; Roller Compactor [3.33 h]; Sew Dia. 150mm Depth: 1.51m - 2.5m [1.63] | 468.95 | 468.95 | 0.00104261322598816 | Cons. | Z3 | Sew | Cons | GRPs | Cust. Rd 01 | Sew | CS.UNSC | SUB.C |
| B5.33 31 00.01.02.36 |  | Backfilling & Warrning Tape (10.42% Completed) | 132d | 2026-04-10 A | 2026-09-15 A | B5.33 31 00.01.02.32 FF | 100% |  | 2026-04-11 | 2026-09-15 |  |  | Labor [8.12 h]; Foreman [4.06 h]; Operator [16.25 h]; Surveyor [4.06 h]; Surveyor Helper [4.06 h]; Loader [4.17 h]; Water Tanker [4.17 h]; Dump Truck [4.17 h]; Plate Compactor [4.17 h]; Roller Compactor [4.17 h]; Sew Dia. 150mm Depth: 1.51m - 2.5m [0.82] | 234.66 | 234.66 | 0.000521716123294941 | Cons. | Z3 | Sew | Cons | GRPs | Cust. Rd 01 | Sew | CS.UNSC | SUB.C |
| B5.33 31 00.01.02.20 |  | Excavation | 2d | 2026-04-15 A | 2026-04-16 A | B1.1.31 23 23.122 SS | 100% |  |  |  |  |  | Labor [28.35 h]; Foreman [14.17 h]; Operator [28.35 h]; Surveyor [14.17 h]; Surveyor Helper [14.17 h]; Excavator (With Bucket) [16 h]; Water Tanker [16 h]; Dump Truck [16 h]; Plate Compactor [16 h]; Sew Dia. 150mm Depth: 1.51m - 2.5m [15.67] | 4,500.25 | 4,500.25 | 0.00104261322598816 | Cons. | Z3 | Sew | Cons | GRPs | Cust. Rd 01 | Sew | CS.UNSC | SUB.C |
| B5.33 31 00.01.02.24 |  | Sand Bedding | 2d | 2026-04-18 A | 2026-04-19 A | B5.33 31 00.01.02.20 | 100% |  |  |  |  |  | Labor [28.35 h]; Foreman [14.17 h]; Operator [56.7 h]; Surveyor [14.17 h]; Surveyor Helper [14.17 h]; Loader [16 h]; Water Tanker [16 h]; Dump Truck [16 h]; Plate Compactor [16 h]; Sew Dia. 150mm Depth: 1.51m - 2.5m [3.92] | 1,124.18 | 1,124.18 | 0.000260448551346613 | Cons. | Z3 | Sew | Cons | GRPs | Cust. Rd 01 | Sew | CS.UNSC | SUB.C |
| B5.33 31 00.01.02.28_R |  | Pipe Laying(Rem) | 2.69d | 2026-09-22 A | 2026-10-10 A | B5.33 31 00.01.02.24, DMM2-Proc-Delv-4038_R SS, B5.33 31 00.01.02.28 | 100% |  | 2026-09-16 | 2026-09-19 |  |  | Labor [41.86 h]; Foreman [20.93 h]; Plumber Helper [20.93 h]; Plumber [20.93 h]; Operator [20.93 h]; Surveyor [20.93 h]; Surveyor Helper [20.93 h]; Mobile Crane [21.48 h]; Sew Dia. 150mm Depth: 1.51m - 2.5m [31.56] | 9,060.95 | 9,060.95 | 0.00234567500332294 | Cons. | Z3 | Sew | Cons | GRPs | Cust. Rd 01 | Sew | CS.UNSC | SUB.C |
| B5.33 31 00.01.02.32_R |  | Embedment & Test(Rem) | 3.67d | 2026-09-26 A | 2026-10-21 | B5.33 31 00.01.02.28_R FF, B5.33 31 00.01.02.32 | 80% | 0.73d | 2026-09-16 | 2026-09-20 | 112.59d |  | Labor [55.87 h]; Foreman [27.94 h]; Plumber Helper [27.94 h]; Plumber [27.94 h]; Operator [55.87 h]; Surveyor [27.94 h]; Surveyor Helper [27.94 h]; Loader [28.67 h]; Water Tanker [28.67 h]; Dump Truck [28.67 h]; Plate Compactor [28.67 h]; Roller Compactor [28.67 h]; Sew Dia. 150mm Depth: 1.51m - 2.5m [14.04] | 4,031.3 | 3,677.96 | 0.00104261322598816 | Cons. | Z3 | Sew | Cons | GRPs | Cust. Rd 01 | Sew | CS.UNSC | SUB.C |
| B5.33 31 00.01.02.36_R |  | Backfilling & Warrning Tape(Rem) | 4.56d | 2026-09-28 A | 2026-10-12 A | B5.33 31 00.01.02.32_R FF, B5.33 31 00.01.02.36 | 100% |  | 2026-09-16 | 2026-09-21 |  |  | Labor [69.84 h]; Foreman [34.92 h]; Operator [139.68 h]; Surveyor [34.92 h]; Surveyor Helper [34.92 h]; Loader [35.83 h]; Water Tanker [35.83 h]; Dump Truck [35.83 h]; Plate Compactor [35.83 h]; Roller Compactor [35.83 h]; Sew Dia. 150mm Depth: 1.51m - 2.5m [7.03] | 2,017.23 | 2,017.23 | 0.000521716123294941 | Cons. | Z3 | Sew | Cons | GRPs | Cust. Rd 01 | Sew | CS.UNSC | SUB.C |

| ID | WBS | Activity | Duration | Start | Finish | Predecessors | Complete | Remaining | Planned start | Planned finish | Total float | Free float | Resources | Cost | Actual cost | Weight % | DMM2 Weekly Progress | DMM2 Zones | Networks & Stations | DMM2 Phases | UNASCO | Networks Components | Subcontractors works | Dmm2 Roads | Yellow Sheet |
| --- | --- | --- | --- | --- | --- | --- | --- | --- | --- | --- | --- | --- | --- | --- | --- | --- | --- | --- | --- | --- | --- | --- | --- | --- | --- |
|  | 4 | **Depth From 2.5m to 3.5m** |  | 2026-04-18 | 2026-10-21 |  |  |  |  |  |  |  |  |  |  |  |  |  |  |  |  |  |  |  |  |
| B5.33 31 00.01.02.22 |  | Excavation | 2d | 2026-04-18 A | 2026-04-19 A | B5.33 31 00.01.02.20 | 100% |  |  |  |  |  | Labor [28.35 h]; Foreman [14.17 h]; Operator [28.35 h]; Surveyor [14.17 h]; Surveyor Helper [14.17 h]; Excavator (With Bucket) [16 h]; Water Tanker [16 h]; Dump Truck [16 h]; Plate Compactor [16 h]; Sew Dia. 150mm Depth: 2.51m - 3.5m [2.82] | 977.13 | 977.13 | 0.000221608358516241 | Cons. | Z3 | Sew | Cons | CS.UNSC | GRPs | SUB.C | Cust. Rd 01 | Sew |
| B5.33 31 00.01.02.26 |  | Sand Bedding | 1d | 2026-04-20 A | 2026-04-20 A | B5.33 31 00.01.02.22 | 100% |  |  |  |  |  | Labor [42.52 h]; Foreman [21.26 h]; Operator [85.05 h]; Surveyor [21.26 h]; Surveyor Helper [21.26 h]; Loader [24 h]; Water Tanker [24 h]; Dump Truck [24 h]; Plate Compactor [24 h]; Sew Dia. 150mm Depth: 2.51m - 3.5m [0.7] | 244.28 | 244.28 | 5.54020896290601E-005 | Cons. | Z3 | Sew | Cons | CS.UNSC | GRPs | SUB.C | Cust. Rd 01 | Sew |
| B5.33 31 00.01.02.30 |  | Pipe Laying | 7.12d | 2026-05-06 A | 2026-05-14 A | B5.33 31 00.01.02.26 | 100% |  |  |  |  |  | Labor [28.35 h]; Foreman [14.17 h]; Plumber Helper [14.17 h]; Plumber [14.17 h]; Operator [14.17 h]; Surveyor [14.17 h]; Surveyor Helper [14.17 h]; Mobile Crane [16 h]; Sew Dia. 150mm Depth: 2.51m - 3.5m [6.35] | 2,202.91 | 2,202.91 | 0.000499608129690632 | Cons. | Z3 | Sew | Cons | CS.UNSC | GRPs | SUB.C | Cust. Rd 01 | Sew |
| B5.33 31 00.01.02.34 |  | Embedment & Test (10.42% Completed) | 108d | 2026-05-09 A | 2026-09-15 A | B5.33 31 00.01.02.30 | 100% |  |  |  |  |  | Labor [6.5 h]; Foreman [3.25 h]; Plumber Helper [3.25 h]; Plumber [3.25 h]; Operator [6.5 h]; Surveyor [3.25 h]; Surveyor Helper [3.25 h]; Loader [3.33 h]; Water Tanker [3.33 h]; Dump Truck [3.33 h]; Plate Compactor [3.33 h]; Roller Compactor [3.33 h]; Sew Dia. 150mm Depth: 2.51m - 3.5m [0.29] | 101.82 | 101.82 | 0.000221608358516241 | Cons. | Z3 | Sew | Cons | CS.UNSC | GRPs | SUB.C | Cust. Rd 01 | Sew |
| B5.33 31 00.01.02.38 |  | Backfilling & Warrning Tape (10.42% Completed) | 106d | 2026-05-11 A | 2026-09-15 A | B5.33 31 00.01.02.34 FF, B5.33 31 00.01.02.36 SS | 100% |  |  |  |  |  | Labor [8.12 h]; Foreman [4.06 h]; Operator [16.25 h]; Surveyor [4.06 h]; Surveyor Helper [4.06 h]; Loader [4.17 h]; Water Tanker [4.17 h]; Dump Truck [4.17 h]; Plate Compactor [4.17 h]; Roller Compactor [4.17 h]; Sew Dia. 150mm Depth: 2.51m - 3.5m [0.15] | 50.91 | 50.91 | 0.00011080417925812 | Cons. | Z3 | Sew | Cons | CS.UNSC | GRPs | SUB.C | Cust. Rd 01 | Sew |
| B5.33 31 00.01.02.34_R |  | Embedment & Test(Rem) | 3.67d | 2026-09-20 A | 2026-10-21 | B5.33 31 00.01.02.30, B5.33 31 00.01.02.34 | 80% | 0.73d | 2026-09-16 | 2026-09-20 | 112.59d |  | Labor [55.87 h]; Foreman [27.94 h]; Plumber Helper [27.94 h]; Plumber [27.94 h]; Operator [55.87 h]; Surveyor [27.94 h]; Surveyor Helper [27.94 h]; Loader [28.67 h]; Water Tanker [28.67 h]; Dump Truck [28.67 h]; Plate Compactor [28.67 h]; Roller Compactor [28.67 h]; Sew Dia. 150mm Depth: 2.51m - 3.5m [2.52] | 875.31 | 813.39 | 0.000221608358516241 | Cons. | Z3 | Sew | Cons | CS.UNSC | GRPs | SUB.C | Cust. Rd 01 | Sew |
| B5.33 31 00.01.02.38_R |  | Backfilling & Warrning Tape(Rem) | 10d | 2026-09-22 A | 2026-09-30 A | DMM2-Proc-Delv-4058 FF, B5.33 31 00.01.02.34_R FF, B5.33 31 00.01.02.36_R SS, B5.33 31 00.01.02.38, B5.33 31 00.01.29_R, B5.33 31 00.01.39_R, B6.33 05 39.01.717_R | 100% |  | 2026-09-22 | 2026-10-04 |  |  | Labor [69.84 h]; Foreman [34.92 h]; Operator [139.68 h]; Surveyor [34.92 h]; Surveyor Helper [34.92 h]; Loader [35.83 h]; Water Tanker [35.83 h]; Dump Truck [35.83 h]; Plate Compactor [35.83 h]; Roller Compactor [35.83 h]; Sew Dia. 150mm Depth: 2.51m - 3.5m [1.26] | 437.66 | 437.66 | 0.00011080417925812 | Cons. | Z3 | Sew | Cons | CS.UNSC | GRPs | SUB.C | Cust. Rd 01 | Sew |
|  | Manholes | **Manholes ?1200** |  | 2026-04-06 | 2026-11-22 |  |  |  |  |  |  |  |  |  |  |  |  |  |  |  |  |  |  |  |  |
|  | 3 | **Depth From 1.5m to 2.5m** |  | 2026-04-06 | 2026-11-22 |  |  |  |  |  |  |  |  |  |  |  |  |  |  |  |  |  |  |  |  |
| B6.33 05 39.01.727 |  | Excavation & Compaction | 4d | 2026-04-06 A | 2026-04-09 A | B5.33 31 00.01.02.22 | 100% |  |  |  |  |  | Labor [28.35 h]; Foreman [14.17 h]; Operator [28.35 h]; Surveyor [14.17 h]; Surveyor Helper [14.17 h]; Excavator (With Bucket) [16 h]; Water Tanker [16 h]; Dump Truck [16 h]; Plate Compactor [16 h]; MH depth 1.51 - 2.5m [0.67] | 8,553.04 | 8,553.04 | 0.00163451626522375 | Cons. | Z3 | Sew | Cons | CS.UNSC | Manhole | SUB.C | Cust. Rd 01 | Sew |
| B6.33 05 39.01.737 |  | Blinding Conc, & RC Base | 3.18d | 2026-05-06 A | 2026-05-10 A | B6.33 05 39.01.727 | 100% |  |  |  |  |  | Labor [42.52 h]; Foreman [21.26 h]; Laboratory Officer [21.26 h]; Carpenter [21.26 h]; Steelfixer [21.26 h]; Mason [21.26 h]; MH depth 1.51 - 2.5m [0.45] | 5,701.91 | 5,701.91 | 0.00108965546636573 | Cons. | Z3 | Sew | Cons | CS.UNSC | Manhole | SUB.C | Cust. Rd 01 | Sew |
| B6.33 05 39.01.747 |  | Manhole Installation (45.23% Completed) | 107d | 2026-05-10 A | 2026-09-15 A | B6.33 05 39.01.737 | 100% |  |  |  |  |  | Labor [14.1 h]; Operator [14.1 h]; Surveyor [7.05 h]; Surveyor Helper [7.05 h]; Boom Truck [7.24 h]; Mobile Crane [7.24 h]; MH depth 1.51 - 2.5m [0.9] | 11,433.04 | 11,433.04 | 0.00483081828096108 | Cons. | Z3 | Sew | Cons | CS.UNSC | Manhole | SUB.C | Cust. Rd 01 | Sew |
| B6.33 05 39.01.757 |  | Test, Internal Finishing, Benching & Cover (45.23% Completed) | 85.88d | 2026-06-08 A | 2026-09-15 A | B6.33 05 39.01.747 SS | 100% |  |  |  |  |  | Labor [28.21 h]; Foreman [14.1 h]; Plumber Helper [14.1 h]; Plumber [14.1 h]; Mason [14.1 h]; MH depth 1.51 - 2.5m [0.25] | 3,167.34 | 3,167.34 | 0.00108965546636573 | Cons. | Z3 | Sew | Cons | CS.UNSC | Manhole | SUB.C | Cust. Rd 01 | Sew |
| B6.33 05 39.01.767 |  | Backfilling (45.23% Completed) | 83d | 2026-06-11 A | 2026-09-15 A | B6.33 05 39.01.757 SS, B5.33 31 00.01.02.38 | 100% |  |  |  |  |  | Labor [56.42 h]; Foreman [28.21 h]; Operator [56.42 h]; Surveyor [28.21 h]; Surveyor Helper [28.21 h]; Loader [28.95 h]; Water Tanker [28.95 h]; Dump Truck [28.95 h]; Plate Compactor [28.95 h]; MH depth 1.51 - 2.5m [0.4] | 5,071.8 | 5,071.8 | 0.0021429945757647 | Cons. | Z3 | Sew | Cons | CS.UNSC | Manhole | SUB.C | Cust. Rd 01 | Sew |
| B6.33 05 39.01.747_R |  | Manhole Installation(Rem) | 1.52d | 2026-09-26 A | 2026-10-21 | B6.33 05 39.01.737, B6.33 05 39.01.747 | 40% | 0.91d | 2026-09-16 | 2026-09-17 | 112.41d |  | Labor [17.08 h]; Operator [17.08 h]; Surveyor [8.54 h]; Surveyor Helper [8.54 h]; Boom Truck [8.76 h]; Mobile Crane [8.76 h]; MH depth 1.51 - 2.5m [1.09] | 13,845.51 | 12,351.46 | 0.00483081828096108 | Cons. | Z3 | Sew | Cons | CS.UNSC | Manhole | SUB.C | Cust. Rd 01 | Sew |
| B6.33 05 39.01.757_R |  | Test, Internal Finishing, Benching & Cover(Rem) | 2.56d | 2026-09-28 A | 2026-10-22 | B6.33 05 39.01.747_R SS, B6.33 05 39.01.757 | 40% | 1.54d | 2026-09-16 | 2026-09-19 | 111.79d |  | Labor [34.16 h]; Foreman [17.08 h]; Plumber Helper [17.08 h]; Plumber [17.08 h]; Mason [17.08 h]; MH depth 1.51 - 2.5m [0.3] | 3,835.68 | 3,077.49 | 0.00108965546636573 | Cons. | Z3 | Sew | Cons | CS.UNSC | Manhole | SUB.C | Cust. Rd 01 | Sew |
| B6.33 05 39.01.767_R |  | Backfilling(Rem) | 10d | 2026-10-04 A | 2026-11-22 | B6.33 05 39.01.4317 FF, B3.33 14 19.01.83 FF, B5.33 31 23.01-1.28 FF, B6.33 05 39.01.757_R SS, B5.33 31 00.01.02.38_R, B6.33 05 39.01.767 | 40% | 6d | 2026-10-08 | 2026-10-19 | 85.32d | 0d | Labor [68.32 h]; Foreman [34.16 h]; Operator [68.32 h]; Surveyor [34.16 h]; Surveyor Helper [34.16 h]; Loader [35.05 h]; Water Tanker [35.05 h]; Dump Truck [35.05 h]; Plate Compactor [35.05 h]; MH depth 1.51 - 2.5m [0.48] | 6,141.99 | 2,211.12 | 0.0021429945757647 | Cons. | Z3 | Sew | Cons | CS.UNSC | Manhole | SUB.C | Cust. Rd 01 | Sew |
|  | 4 | **Depth From 2.5m to 3.5m** |  | 2026-04-26 | 2026-11-22 |  |  |  |  |  |  |  |  |  |  |  |  |  |  |  |  |  |  |  |  |
| B6.33 05 39.01.777 |  | Excavation & Compaction | 2d | 2026-04-26 A | 2026-04-27 A | B6.33 05 39.01.727 | 100% |  |  |  |  |  | Labor [28.35 h]; Foreman [14.17 h]; Operator [28.35 h]; Surveyor [14.17 h]; Surveyor Helper [14.17 h]; Excavator (With Bucket) [16 h]; Water Tanker [16 h]; Dump Truck [16 h]; Plate Compactor [16 h]; MH depth 2.51 - 3.5m [0.82] | 12,557.47 | 12,557.47 | 0.00239967188397841 | Cons. | Z3 | Sew | Cons | CS.UNSC | Manhole | SUB.C | Cust. Rd 01 | Sew |
| B6.33 05 39.01.787 |  | Blinding Conc, & RC Base | 68.17d | 2026-05-06 A | 2026-07-29 A | B6.33 05 39.01.777 | 100% |  |  |  |  |  | Labor [42.52 h]; Foreman [21.26 h]; Laboratory Officer [21.26 h]; Carpenter [21.26 h]; Steelfixer [21.26 h]; Mason [21.26 h]; MH depth 2.51 - 3.5m [0.55] | 8,447.73 | 8,447.73 | 0.00161432058487404 | Cons. | Z3 | Sew | Cons | CS.UNSC | Manhole | SUB.C | Cust. Rd 01 | Sew |
| B6.33 05 39.01.797 |  | Manhole Installation (45.23% Completed) | 107d | 2026-05-10 A | 2026-09-15 A | B6.33 05 39.01.787 | 100% |  |  |  |  |  | Labor [14.1 h]; Operator [14.1 h]; Surveyor [7.05 h]; Surveyor Helper [7.05 h]; Boom Truck [7.24 h]; Mobile Crane [7.24 h]; MH depth 2.51 - 3.5m [1.12] | 17,141.83 | 17,141.83 | 0.00724264604982577 | Cons. | Z3 | Sew | Cons | CS.UNSC | Manhole | SUB.C | Cust. Rd 01 | Sew |
| B6.33 05 39.01.807 |  | Test, Internal Finishing, Benching & Cover (45.23% Completed) | 80.88d | 2026-06-14 A | 2026-09-15 A | B6.33 05 39.01.797 SS | 100% |  |  |  |  |  | Labor [28.21 h]; Foreman [14.1 h]; Plumber Helper [14.1 h]; Plumber [14.1 h]; Mason [14.1 h]; MH depth 2.51 - 3.5m [0.25] | 3,820.76 | 3,820.76 | 0.00161432058487404 | Cons. | Z3 | Sew | Cons | CS.UNSC | Manhole | SUB.C | Cust. Rd 01 | Sew |
| B6.33 05 39.01.817 |  | Backfilling (45.23% Completed) | 77d | 2026-06-18 A | 2026-09-15 A | B6.33 05 39.01.807 SS, B6.33 05 39.01.767 FF | 100% |  |  |  |  |  | Labor [42.31 h]; Foreman [21.16 h]; Operator [42.31 h]; Surveyor [21.16 h]; Surveyor Helper [21.16 h]; Loader [21.71 h]; Water Tanker [21.71 h]; Dump Truck [21.71 h]; Plate Compactor [21.71 h]; MH depth 2.51 - 3.5m [0.5] | 7,641.54 | 7,641.54 | 0.00322864944389824 | Cons. | Z3 | Sew | Cons | CS.UNSC | Manhole | SUB.C | Cust. Rd 01 | Sew |
| B6.33 05 39.01.797_R |  | Manhole Installation(Rem) | 1.52d | 2026-09-21 A | 2026-10-21 | B6.33 05 39.01.787, B6.33 05 39.01.797 | 40% | 0.91d | 2026-09-16 | 2026-09-17 | 112.41d |  | Labor [17.08 h]; Operator [17.08 h]; Surveyor [8.54 h]; Surveyor Helper [8.54 h]; Boom Truck [8.76 h]; Mobile Crane [8.76 h]; MH depth 2.51 - 3.5m [1.36] | 20,758.91 | 18,856.33 | 0.00724264604982577 | Cons. | Z3 | Sew | Cons | CS.UNSC | Manhole | SUB.C | Cust. Rd 01 | Sew |
| B6.33 05 39.01.807_R |  | Test, Internal Finishing, Benching & Cover(Rem) | 2.56d | 2026-09-24 A | 2026-10-22 | B6.33 05 39.01.797_R SS, B6.33 05 39.01.807 | 40% | 1.54d | 2026-09-16 | 2026-09-19 | 111.79d |  | Labor [34.16 h]; Foreman [17.08 h]; Plumber Helper [17.08 h]; Plumber [17.08 h]; Mason [17.08 h]; MH depth 2.51 - 3.5m [0.3] | 4,626.97 | 3,860.4 | 0.00161432058487404 | Cons. | Z3 | Sew | Cons | CS.UNSC | Manhole | SUB.C | Cust. Rd 01 | Sew |
| B6.33 05 39.01.817_R |  | Backfilling(Rem) | 10d | 2026-10-01 A | 2026-11-22 | B5.33 05 63.015 FF, B6.33 05 39.01.807_R SS, B6.33 05 39.01.767_R FF, B6.33 05 39.01.817 | 40% | 6d | 2026-10-08 | 2026-10-19 | 85.32d | 11.22d | Labor [51.24 h]; Foreman [25.62 h]; Operator [51.24 h]; Surveyor [25.62 h]; Surveyor Helper [25.62 h]; Loader [26.29 h]; Water Tanker [26.29 h]; Dump Truck [26.29 h]; Plate Compactor [26.29 h]; MH depth 2.51 - 3.5m [0.61] | 9,253.97 | 3,766.91 | 0.00322864944389824 | Cons. | Z3 | Sew | Cons | CS.UNSC | Manhole | SUB.C | Cust. Rd 01 | Sew |

| ID | WBS | Activity | Duration | Start | Finish | Predecessors | Complete | Remaining | Planned start | Planned finish | Total float | Free float | Resources | Cost | Actual cost | Weight % | DMM2 Weekly Progress | DMM2 Zones | Networks & Stations | DMM2 Phases | UNASCO | Networks Components | Subcontractors works | Dmm2 Roads | Yellow Sheet |
| --- | --- | --- | --- | --- | --- | --- | --- | --- | --- | --- | --- | --- | --- | --- | --- | --- | --- | --- | --- | --- | --- | --- | --- | --- | --- |
|  | GRP1 | **HDPE Pipes** |  | 2026-10-21 | 2026-11-22 |  |  |  |  |  |  |  |  |  |  |  |  |  |  |  |  |  |  |  |  |
|  | 200 | **?160** |  | 2026-10-21 | 2026-11-22 |  |  |  |  |  |  |  |  |  |  |  |  |  |  |  |  |  |  |  |  |
|  | 1 | **Depth From 0.0m to 1.5m** |  | 2026-10-21 | 2026-11-22 |  |  |  |  |  |  |  |  |  |  |  |  |  |  |  |  |  |  |  |  |
| B5.33 31 23.01-1.20 |  | Excavation | 10d | 2026-10-21 | 2026-11-01 | B5.33 31 00.01.02.22 |  |  |  |  | 85.32d | 0d | Labor [46.78 h]; Foreman [23.39 h]; Operator [46.78 h]; Surveyor [23.39 h]; Surveyor Helper [23.39 h]; Excavator (With Bucket) [24 h]; Water Tanker [24 h]; Dump Truck [24 h]; Plate Compactor [24 h]; Sew HDPE Dia. 160 mm depth: 0- 1.5m [151.98] | 16,012.44 |  | 0.0005235647746862 | Cons. | Z3 | Sew | Cons | CS.UNSC | HDPEs | SUB.C | Cust. Rd 01 | Sew |
| B5.33 31 23.01-1.22 |  | Sand Bedding | 3d | 2026-11-02 | 2026-11-04 | B5.33 31 23.01-1.20, B6.33 05 39.01.727 |  |  |  |  | 85.32d | 0d | Labor [46.94 h]; Foreman [23.47 h]; Operator [93.87 h]; Surveyor [23.47 h]; Surveyor Helper [23.47 h]; Loader [24 h]; Water Tanker [24 h]; Dump Truck [24 h]; Plate Compactor [24 h]; Sew HDPE Dia. 160 mm depth: 0- 1.5m [38.04] | 4,007.71 |  | 0.000131041470587361 | Cons. | Z3 | Sew | Cons | CS.UNSC | HDPEs | SUB.C | Cust. Rd 01 | Sew |
| B5.33 31 23.01-1.24 |  | Pipe Laying | 3d | 2026-11-05 | 2026-11-08 | B5.33 31 23.01-1.22 |  |  |  |  | 85.32d | 0d | Labor [31.18 h]; Foreman [15.59 h]; Plumber Helper [15.59 h]; Plumber [15.59 h]; Operator [15.59 h]; Surveyor [15.59 h]; Surveyor Helper [15.59 h]; Mobile Crane [16 h]; Sew HDPE Dia. 160 mm depth: 0- 1.5m [342] | 36,032.59 |  | 0.00117817101995976 | Cons. | Z3 | Sew | Cons | CS.UNSC | HDPEs | SUB.C | Cust. Rd 01 | Sew |
| B5.33 31 23.01-1.26 |  | Embedment & Test | 5d | 2026-11-09 | 2026-11-14 | B5.33 31 23.01-1.24 |  |  |  |  | 85.32d | 0d | Labor [77.96 h]; Foreman [38.98 h]; Plumber Helper [38.98 h]; Plumber [38.98 h]; Operator [77.96 h]; Surveyor [38.98 h]; Surveyor Helper [38.98 h]; Loader [40 h]; Water Tanker [40 h]; Dump Truck [40 h]; Plate Compactor [40 h]; Roller Compactor [40 h]; Sew HDPE Dia. 160 mm depth: 0- 1.5m [151.98] | 16,012.44 |  | 0.0005235647746862 | Cons. | Z3 | Sew | Cons | CS.UNSC | HDPEs | SUB.C | Cust. Rd 01 | Sew |
| B5.33 31 23.01-1.28 |  | Backfilling & Warrning Tape | 7d | 2026-11-15 | 2026-11-22 | B5.33 31 23.01-1.26 |  |  |  |  | 85.32d | 0d | Labor [109.15 h]; Foreman [54.57 h]; Operator [218.29 h]; Surveyor [54.57 h]; Surveyor Helper [54.57 h]; Loader [56 h]; Water Tanker [56 h]; Dump Truck [56 h]; Plate Compactor [56 h]; Roller Compactor [56 h]; Sew HDPE Dia. 160 mm depth: 0- 1.5m [75.99] | 8,006.22 |  | 0.000261782387343099 | Cons. | Z3 | Sew | Cons | CS.UNSC | HDPEs | SUB.C | Cust. Rd 01 | Sew |
|  | Stormwater Network | **Stormwater Network** |  | 2026-06-01 | 2026-10-29 |  |  |  |  |  |  |  |  |  |  |  |  |  |  |  |  |  |  |  |  |
|  | Box Cul. | **Box Cul.** |  | 2026-06-01 | 2026-10-29 |  |  |  |  |  |  |  |  |  |  |  |  |  |  |  |  |  |  |  |  |
| B6. 33 42 13.16 |  | Excavation | 85.29d | 2026-06-01 A | 2026-09-09 A | B6. 33 42 13.011, B1.1.31 23 23.122 | 100% |  |  |  |  |  | Labor [127.57 h]; Foreman [63.79 h]; Operator [127.57 h]; Surveyor [63.79 h]; Surveyor Helper [63.79 h]; Excavator (With Bucket) [72 h]; Water Tanker [72 h]; Dump Truck [72 h]; Plate Compactor [72 h]; Concrete for box culvert [167.7]; Steel Reinforcement for box culverts [55.8] | 469,243.98 | 469,243.98 | 0.201000622564354 | Cons. | Z3 | Storm | Cons |  | Box.Cul | SUB.C | Cust. Rd 01 | Box.Cul |
| B6. 33 42 13.26 |  | Lean PC & RC Foundation | 81.21d | 2026-06-07 A | 2026-09-10 A | B6. 33 42 13.16 | 100% |  |  |  |  |  | Labor [70.87 h]; Laboratory Officer [35.44 h]; Carpenter [35.44 h]; Steelfixer [35.44 h]; Mason [35.44 h]; Operator [70.87 h]; Surveyor [35.44 h]; Surveyor Helper [35.44 h]; Mobile Crane [40 h]; Concrete for box culvert [223.6]; Steel Reinforcement for box culverts [37.2] | 474,794.39 | 474,794.39 | 0.206833940948998 | Cons. | Z3 | Storm | Cons |  | Box.Cul | SUB.C | Cust. Rd 01 | Box.Cul |
| B6. 33 42 13.36 |  | Box Reinforced Conc. Walls incl. Water Stop | 82.5d | 2026-06-10 A | 2026-09-14 A | B6. 33 42 13.26, B6.33 05 63.041 | 100% |  |  |  |  |  | Labor [141.75 h]; Laboratory Officer [70.87 h]; Carpenter [70.87 h]; Steelfixer [70.87 h]; Mason [70.87 h]; Operator [141.75 h]; Surveyor [70.87 h]; Surveyor Helper [70.87 h]; Mobile Crane [80 h]; Concrete for box culvert [223.6]; Steel Reinforcement for box culverts [37.2] | 474,794.39 | 474,794.39 | 0.206833940948998 | Cons. | Z3 | Storm | Cons |  | Box.Cul | SUB.C | Cust. Rd 01 | Box.Cul |
| B6. 33 42 13.46 |  | Box Reinforced Conc. Slab (92.00% Completed) | 40.5d | 2026-07-30 A | 2026-09-15 A | B6. 33 42 13.36 | 100% |  |  |  |  |  | Labor [143.45 h]; Laboratory Officer [71.72 h]; Carpenter [71.72 h]; Steelfixer [71.72 h]; Mason [71.72 h]; Operator [143.45 h]; Surveyor [71.72 h]; Surveyor Helper [71.72 h]; Mobile Crane [73.6 h]; Concrete for box culvert [205.71]; Steel Reinforcement for box culverts [34.22] | 436,810.84 | 436,810.84 | 0.206833940948998 | Cons. | Z3 | Storm | Cons |  | Box.Cul | SUB.C | Cust. Rd 01 | Box.Cul |
| B6. 33 42 13.56 |  | Curing & Water Proofing (75.00% Completed) | 36d | 2026-08-05 A | 2026-09-15 A | B6. 33 42 13.46 SS | 100% |  |  |  |  |  | Labor [70.17 h]; Mason [35.08 h]; Concrete for box culvert [83.85]; Steel Reinforcement for box culverts [27.9] | 234,621.99 | 234,621.99 | 0.134000415042902 | Cons. | Z3 | Storm | Cons |  | Box.Cul | SUB.C | Cust. Rd 01 | Box.Cul |
| B6. 33 42 13.46_R |  | Box Reinforced Conc. Slab(Rem) | 3d | 2026-09-24 A | 2026-10-14 A | B6. 33 42 13.36, B6. 33 42 13.46 | 100% |  | 2026-09-16 | 2026-09-19 |  |  | Labor [12.47 h]; Laboratory Officer [6.24 h]; Carpenter [6.24 h]; Steelfixer [6.24 h]; Mason [6.24 h]; Operator [12.47 h]; Surveyor [6.24 h]; Surveyor Helper [6.24 h]; Mobile Crane [6.4 h]; Concrete for box culvert [17.89]; Steel Reinforcement for box culverts [2.98] | 37,983.55 | 37,983.55 | 0.206833940948998 | Cons. | Z3 | Storm | Cons |  | Box.Cul | SUB.C | Cust. Rd 01 | Box.Cul |
| B6. 33 42 13.56_R |  | Curing & Water Proofing(Rem) | 2.5d | 2026-09-28 A | 2026-10-21 | B6. 33 42 13.46_R SS, B6. 33 42 13.56 | 80% | 0.5d | 2026-09-16 | 2026-09-19 | 105.82d | 0d | Labor [23.39 h]; Mason [11.69 h]; Concrete for box culvert [27.95]; Steel Reinforcement for box culverts [9.3] | 78,207.33 | 72,813.72 | 0.134000415042902 | Cons. | Z3 | Storm | Cons |  | Box.Cul | SUB.C | Cust. Rd 01 | Box.Cul |
| B6. 33 42 13.66 |  | Backfilling & Warrning Tape | 6d | 2026-10-21 | 2026-10-28 | B6. 33 42 13.56_R |  |  |  |  | 106.82d |  | Labor [155.92 h]; Foreman [77.96 h]; Operator [311.85 h]; Surveyor [77.96 h]; Surveyor Helper [77.96 h]; Loader [80 h]; Water Tanker [80 h]; Dump Truck [80 h]; Plate Compactor [80 h]; Roller Compactor [80 h]; Concrete for box culvert [167.7]; Steel Reinforcement for box culverts [55.8] | 469,243.98 |  | 0.201000622564354 | Cons. | Z3 | Storm | Cons |  | Box.Cul | SUB.C | Cust. Rd 01 | Box.Cul |
|  | Conc. Ch | **Concrete Chambers** |  | 2026-09-02 | 2026-10-29 |  |  |  |  |  |  |  |  |  |  |  |  |  |  |  |  |  |  |  |  |
|  | Conc. Ch 2.53.51 | **Size 3.0 x 3.0 m, depth 1.5 to 2.5** |  | 2026-09-02 | 2026-10-29 |  |  |  |  |  |  |  |  |  |  |  |  |  |  |  |  |  |  |  |  |
| B6.33 05 63.012 |  | Cocrete Cast for Chamber & Curing (75.00% Completed) | 12d | 2026-09-02 A | 2026-09-15 A | B6. 33 42 13.26 | 100% |  |  |  |  |  | Labor [35.08 h]; Mason [17.54 h]; Operator [35.08 h]; Size 3.0 x 3.0 m, depth 1.51-2.5 m [0.42] | 8,348.37 | 8,348.37 | 0.00211144072721704 | Cons. | Z3 | Storm | Cons |  | Box.Cul | SUB.C | Cust. Rd 01 | Box.Cul |
| B6.33 05 63.011 |  | Shuttering, Steel Fixing, CJ & Water Stop | 3d | 2026-09-07 A | 2026-09-10 A | B1.2.32 11 23.01.18, B6. 33 42 13.36 | 100% |  |  |  |  |  | Labor [85.05 h]; Carpenter [42.52 h]; Steelfixer [42.52 h]; Operator [85.05 h]; Boom Truck [48 h]; Mobile Crane [48 h]; Size 3.0 x 3.0 m, depth 1.51-2.5 m [0.15] | 2,899.56 | 2,899.56 | 0.000550009200952161 | Cons. | Z3 | Storm | Cons |  | Box.Cul | SUB.C | Cust. Rd 01 | Box.Cul |
| B6.33 05 63.012_R |  | Cocrete Cast for Chamber & Curing(Rem) | 3d | 2026-10-03 A | 2026-10-04 A | B6. 33 42 13.26, B6.33 05 63.012, DMM2-Proc-Delv-7274_R, DMM2-Proc-Delv-7414 | 100% |  | 2026-10-08 | 2026-10-11 |  |  | Labor [11.69 h]; Mason [5.85 h]; Operator [11.69 h]; Size 3.0 x 3.0 m, depth 1.51-2.5 m [0.14] | 2,782.79 | 2,782.79 | 0.00211144072721704 | Cons. | Z3 | Storm | Cons |  | Box.Cul | SUB.C | Cust. Rd 01 | Box.Cul |
| B6.33 05 63.014 |  | Waterproofing Tanking Membrane & Protection | 4d | 2026-10-15 A | 2026-10-25 | B6.33 05 63.013, B6. 33 42 13.46_R, B6.33 05 63.043 | 19% | 3.24d | 2026-10-22 | 2026-10-27 | 110.08d |  | Labor [93.55 h]; Mason [46.78 h]; Size 3.0 x 3.0 m, depth 1.51-2.5 m [0.15] | 2,899.56 | 1,011.53 | 0.000550009200952161 | Cons. | Z3 | Storm | Cons |  | Box.Cul | SUB.C | Cust. Rd 01 | Box.Cul |
| B6.33 05 63.013 |  | Cast Iron Steps Installation, Epoxy Paint & Internal Finishing | 7d | 2026-10-21 | 2026-10-29 | B6.33 05 63.012_R, B6. 33 42 13.56_R |  |  |  |  | 105.82d |  | Labor [93.55 h]; Mason [46.78 h]; Size 3.0 x 3.0 m, depth 1.51-2.5 m [0.15] | 2,899.56 |  | 0.000550009200952161 | Cons. | Z3 | Storm | Cons |  | Box.Cul | SUB.C | Cust. Rd 01 | Box.Cul |

| ID | WBS | Activity | Duration | Start | Finish | Predecessors | Complete | Remaining | Planned start | Planned finish | Total float | Free float | Resources | Cost | Actual cost | Weight % | DMM2 Weekly Progress | DMM2 Zones | Networks & Stations | DMM2 Phases | Networks Components | Subcontractors works | Dmm2 Roads | Yellow Sheet | UNASCO |
| --- | --- | --- | --- | --- | --- | --- | --- | --- | --- | --- | --- | --- | --- | --- | --- | --- | --- | --- | --- | --- | --- | --- | --- | --- | --- |
|  | Conc. Ch 3.54.5 | **Size 3.0 x 1.5 m, depth 1.5 to 2.5** |  | 2026-09-05 | 2026-10-27 |  |  |  |  |  |  |  |  |  |  |  |  |  |  |  |  |  |  |  |  |
| B6.33 05 63.021 |  | Shuttering, Steel Fixing, CJ & Water Stop (75.00% Completed) | 10d | 2026-09-05 A | 2026-09-15 A | B6.33 05 63.011, B6. 33 42 13.26 | 100% |  |  |  |  |  | Labor [70.17 h]; Carpenter [35.08 h]; Steelfixer [35.08 h]; Operator [70.17 h]; Boom Truck [36 h]; Mobile Crane [36 h]; Size 3.0 x 1.5 m, depth 1.51-2.5 m [0.11] | 1,527.07 | 1,527.07 | 0.000386221707338139 | Cons. | Z3 | Storm | Cons | Box.Cul | SUB.C | Cust. Rd 01 | Box.Cul |  |
| B6.33 05 63.022 |  | Cocrete Cast for Chamber & Curing (75.00% Completed) | 7d | 2026-09-08 A | 2026-09-15 A | B6.33 05 63.012 SS | 100% |  |  |  |  |  | Labor [70.17 h]; Mason [35.08 h]; Operator [70.17 h]; Size 3.0 x 1.5 m, depth 1.51-2.5 m [0.42] | 5,650.16 | 5,650.16 | 0.00142902031715112 | Cons. | Z3 | Storm | Cons | Box.Cul | SUB.C | Cust. Rd 01 | Box.Cul |  |
| B6.33 05 63.021_R |  | Shuttering, Steel Fixing, CJ & Water Stop(Rem) | 2.5d | 2026-09-21 A | 2026-09-26 A | B6.33 05 63.011, B6. 33 42 13.26, B6.33 05 63.021 | 100% |  | 2026-09-16 | 2026-09-19 |  |  | Labor [23.39 h]; Carpenter [11.69 h]; Steelfixer [11.69 h]; Operator [23.39 h]; Boom Truck [12 h]; Mobile Crane [12 h]; Size 3.0 x 1.5 m, depth 1.51-2.5 m [0.04] | 509.02 | 509.02 | 0.000386221707338139 | Cons. | Z3 | Storm | Cons | Box.Cul | SUB.C | Cust. Rd 01 | Box.Cul |  |
| B6.33 05 63.022_R |  | Cocrete Cast for Chamber & Curing(Rem) | 2.5d | 2026-10-01 A | 2026-10-03 A | B6.33 05 63.012_R SS, B6.33 05 63.022 | 100% |  | 2026-10-08 | 2026-10-11 |  |  | Labor [23.39 h]; Mason [11.69 h]; Operator [23.39 h]; Size 3.0 x 1.5 m, depth 1.51-2.5 m [0.14] | 1,883.39 | 1,883.39 | 0.00142902031715112 | Cons. | Z3 | Storm | Cons | Box.Cul | SUB.C | Cust. Rd 01 | Box.Cul |  |
| B6.33 05 63.024 |  | Waterproofing Tanking Membrane & Protection | 4d | 2026-10-17 A | 2026-10-25 | B6.33 05 63.023, B6.33 05 63.014, B6. 33 42 13.66, B6.33 42 11.36-1.20_R, B6.33 42 11.36-185_R | 19% | 3.24d | 2026-10-27 | 2026-11-01 | 110.08d |  | Labor [93.55 h]; Mason [46.78 h]; Size 3.0 x 1.5 m, depth 1.51-2.5 m [0.15] | 2,036.1 | 634.43 | 0.000386221707338139 | Cons. | Z3 | Storm | Cons | Box.Cul | SUB.C | Cust. Rd 01 | Box.Cul |  |
| B6.33 05 63.023 |  | Cast Iron Steps Installation, Epoxy Paint & Internal Finishing | 5d | 2026-10-21 | 2026-10-27 | B6.33 05 63.022_R, B6. 33 42 13.56_R |  |  |  |  | 107.82d |  | Labor [93.55 h]; Mason [46.78 h]; Size 3.0 x 1.5 m, depth 1.51-2.5 m [0.15] | 2,036.1 |  | 0.000386221707338139 | Cons. | Z3 | Storm | Cons | Box.Cul | SUB.C | Cust. Rd 01 | Box.Cul |  |
|  | Conc. Ch 3.54.51 | **Size 2.5 x 1.5 m, depth 1.5 to 2.5** |  | 2026-09-07 | 2026-10-26 |  |  |  |  |  |  |  |  |  |  |  |  |  |  |  |  |  |  |  |  |
| B6.33 05 63.031 |  | Shuttering, Steel Fixing, CJ & Water Stop (75.00% Completed) | 8d | 2026-09-07 A | 2026-09-15 A | B6. 33 42 13.26, B6.33 05 63.021 SS | 100% |  |  |  |  |  | Labor [70.17 h]; Carpenter [35.08 h]; Steelfixer [35.08 h]; Operator [70.17 h]; Boom Truck [36 h]; Mobile Crane [36 h]; Size 2.5 x 1.5 m, depth 1.51-2.5 m [0.11] | 1,358.89 | 1,358.89 | 0.000343686282039077 | Cons. | Z3 | Storm | Cons | Box.Cul | SUB.C | Cust. Rd 01 | Box.Cul |  |
| B6.33 05 63.032 |  | Cocrete Cast for Chamber & Curing (75.00% Completed) | 4d | 2026-09-12 A | 2026-09-15 A | B6.33 05 63.022 SS | 100% |  |  |  |  |  | Labor [70.17 h]; Mason [35.08 h]; Operator [70.17 h]; Size 2.5 x 1.5 m, depth 1.51-2.5 m [0.42] | 5,027.9 | 5,027.9 | 0.00127163924354458 | Cons. | Z3 | Storm | Cons | Box.Cul | SUB.C | Cust. Rd 01 | Box.Cul |  |
| B6.33 05 63.031_R |  | Shuttering, Steel Fixing, CJ & Water Stop(Rem) | 2.5d | 2026-09-24 A | 2026-10-01 A | B6. 33 42 13.26, B6.33 05 63.021_R SS, B6.33 05 63.031 | 100% |  | 2026-09-16 | 2026-09-19 |  |  | Labor [23.39 h]; Carpenter [11.69 h]; Steelfixer [11.69 h]; Operator [23.39 h]; Boom Truck [12 h]; Mobile Crane [12 h]; Size 2.5 x 1.5 m, depth 1.51-2.5 m [0.04] | 452.96 | 452.96 | 0.000343686282039077 | Cons. | Z3 | Storm | Cons | Box.Cul | SUB.C | Cust. Rd 01 | Box.Cul |  |
| B6.33 05 63.032_R |  | Cocrete Cast for Chamber & Curing(Rem) | 2d | 2026-10-03 A | 2026-10-04 A | B6.33 05 63.022_R SS, B6.33 05 63.032 | 100% |  | 2026-10-08 | 2026-10-10 |  |  | Labor [23.39 h]; Mason [11.69 h]; Operator [23.39 h]; Size 2.5 x 1.5 m, depth 1.51-2.5 m [0.14] | 1,675.97 | 1,675.97 | 0.00127163924354458 | Cons. | Z3 | Storm | Cons | Box.Cul | SUB.C | Cust. Rd 01 | Box.Cul |  |
| B6.33 05 63.034 |  | Waterproofing Tanking Membrane & Protection | 4d | 2026-10-17 A | 2026-10-25 | B6.33 05 63.033, B6.33 05 63.024 | 19% | 3.24d | 2026-11-01 | 2026-11-05 | 110.08d |  | Labor [93.55 h]; Mason [46.78 h]; Size 2.5 x 1.5 m, depth 1.51-2.5 m [0.15] | 1,811.86 | 564.56 | 0.000343686282039077 | Cons. | Z3 | Storm | Cons | Box.Cul | SUB.C | Cust. Rd 01 | Box.Cul |  |
| B6.33 05 63.033 |  | Cast Iron Steps Installation, Epoxy Paint & Internal Finishing | 4d | 2026-10-21 | 2026-10-26 | B6.33 05 63.032_R, B6. 33 42 13.56_R |  |  |  |  | 108.82d |  | Labor [93.55 h]; Mason [46.78 h]; Size 2.5 x 1.5 m, depth 1.51-2.5 m [0.15] | 1,811.86 |  | 0.000343686282039077 | Cons. | Z3 | Storm | Cons | Box.Cul | SUB.C | Cust. Rd 01 | Box.Cul |  |
|  | Conc. Ch 2.53.5 | **Size 2.0 x 1.5 m, depth 2.5 to 3.5** |  | 2026-09-03 | 2026-10-26 |  |  |  |  |  |  |  |  |  |  |  |  |  |  |  |  |  |  |  |  |
| B6.33 05 63.041 |  | Shuttering, Steel Fixing, CJ & Water Stop | 6d | 2026-09-03 A | 2026-09-10 A | B6.33 05 63.081 | 100% |  |  |  |  |  | Labor [85.05 h]; Carpenter [42.52 h]; Steelfixer [42.52 h]; Operator [85.05 h]; Boom Truck [48 h]; Mobile Crane [48 h]; Size 2.0 x 1.5 m, depth 2.51-3.5 m [0.45] | 8,060.51 | 8,060.51 | 0.00153937874940174 | Cons. | Z3 | Storm | Cons | Box.Cul | SUB.C | Cust. Rd 01 | Box.Cul |  |
| B6.33 05 63.042 |  | Cocrete Cast for Chamber & Curing (75.00% Completed) | 5d | 2026-09-10 A | 2026-09-15 A | B6. 33 42 13.26, B1.2.32 11 23.01.18, B6.33 05 63.032 SS, B6.33 05 63.031 SS | 100% |  |  |  |  |  | Labor [70.17 h]; Mason [35.08 h]; Operator [70.17 h]; Size 2.0 x 1.5 m, depth 2.51-3.5 m [1.24] | 22,367.97 | 22,367.97 | 0.00569571596935693 | Cons. | Z3 | Storm | Cons | Box.Cul | SUB.C | Cust. Rd 01 | Box.Cul |  |
| B6.33 05 63.042_R |  | Cocrete Cast for Chamber & Curing(Rem) | 2d | 2026-09-27 A | 2026-09-29 A | B6. 33 42 13.26, B1.2.32 11 23.01.18, B6.33 05 63.032_R SS, B6.33 05 63.031_R SS, B6.33 05 63.042 | 100% |  | 2026-10-08 | 2026-10-10 |  |  | Labor [23.39 h]; Mason [11.69 h]; Operator [23.39 h]; Size 2.0 x 1.5 m, depth 2.51-3.5 m [0.41] | 7,455.99 | 7,455.99 | 0.00569571596935693 | Cons. | Z3 | Storm | Cons | Box.Cul | SUB.C | Cust. Rd 01 | Box.Cul |  |
| B6.33 05 63.044 |  | Waterproofing Tanking Membrane & Protection | 4d | 2026-10-18 A | 2026-10-25 | B6.33 05 63.043, B6.33 05 63.034 | 19% | 3.24d | 2026-11-05 | 2026-11-10 | 65.68d | 30.76d | Labor [93.55 h]; Mason [46.78 h]; Size 2.0 x 1.5 m, depth 2.51-3.5 m [0.45] | 8,060.51 | 2,106.56 | 0.00153937874940174 | Cons. | Z3 | Storm | Cons | Box.Cul | SUB.C | Cust. Rd 01 | Box.Cul |  |
| B6.33 05 63.043 |  | Cast Iron Steps Installation, Epoxy Paint & Internal Finishing | 4d | 2026-10-21 | 2026-10-26 | B6.33 05 63.042_R, B6. 33 42 13.56_R, B6. 33 42 13.36, B6.33 05 63.011 |  |  |  |  | 108.82d |  | Labor [93.55 h]; Mason [46.78 h]; Size 2.0 x 1.5 m, depth 2.51-3.5 m [0.45] | 8,060.51 |  | 0.00153937874940174 | Cons. | Z3 | Storm | Cons | Box.Cul | SUB.C | Cust. Rd 01 | Box.Cul |  |
|  | Potable Water | **Potable Water Network** |  | 2026-06-10 | 2026-10-25 |  |  |  |  |  |  |  |  |  |  |  |  |  |  |  |  |  |  |  |  |
|  | HDPE | **HDPE Pipes** |  | 2026-06-10 | 2026-10-25 |  |  |  |  |  |  |  |  |  |  |  |  |  |  |  |  |  |  |  |  |
|  | ?110mm | **?110mm** |  | 2026-06-10 | 2026-10-25 |  |  |  |  |  |  |  |  |  |  |  |  |  |  |  |  |  |  |  |  |
|  | Depth: 0.0m - 1.5m | **Depth: 0.0m - 1.5m** |  | 2026-06-17 | 2026-10-24 |  |  |  |  |  |  |  |  |  |  |  |  |  |  |  |  |  |  |  |  |
| B3.33 14 13-91 |  | Excavation (72.00% Completed) | 78d | 2026-06-17 A | 2026-09-15 A | B3.33 14 13.01.0103 | 100% |  |  |  |  |  | Labor [22.45 h]; Foreman [11.23 h]; Operator [22.45 h]; Surveyor [11.23 h]; Surveyor Helper [11.23 h]; Excavator (With Bucket) [11.52 h]; Water Tanker [11.52 h]; Dump Truck [11.52 h]; Plate Compactor [11.52 h]; Depth: 0.0m - 1.5m [112.14] | 16,146.95 | 16,146.95 | 0.00449622803237392 | Cons. | Z3 | Potable | Cons | HDPEs | SUB.C | Cust. Rd 01 | Pot | CS.UNSC |
| B3.33 14 13-95 |  | Sand Bedding (72.00% Completed) | 76d | 2026-06-20 A | 2026-09-15 A | B3.33 14 13-91 FF | 100% |  |  |  |  |  | Labor [22.45 h]; Foreman [11.23 h]; Operator [44.91 h]; Surveyor [11.23 h]; Surveyor Helper [11.23 h]; Loader [11.52 h]; Water Tanker [11.52 h]; Dump Truck [11.52 h]; Plate Compactor [11.52 h]; Depth: 0.0m - 1.5m [28.04] | 4,037.47 | 4,037.47 | 0.00112426239033505 | Cons. | Z3 | Potable | Cons | HDPEs | SUB.C | Cust. Rd 01 | Pot | CS.UNSC |
| B3.33 14 13-99 |  | Pipe Laying (72.00% Completed) | 74d | 2026-06-22 A | 2026-09-15 A | B3.33 14 13-95 FF | 100% |  |  |  |  |  | Labor [22.45 h]; Foreman [11.23 h]; Plumber Helper [11.23 h]; Plumber [11.23 h]; Operator [11.23 h]; Surveyor [11.23 h]; Surveyor Helper [11.23 h]; Mobile Crane [11.52 h]; Depth: 0.0m - 1.5m [252.32] | 36,331.36 | 36,331.36 | 0.0101167184550828 | Cons. | Z3 | Potable | Cons | HDPEs | SUB.C | Cust. Rd 01 | Pot | CS.UNSC |
| B3.33 14 13-103 |  | Embedment & Test (72.00% Completed) | 71d | 2026-06-25 A | 2026-09-15 A | B3.33 14 13-99 FF | 100% |  |  |  |  |  | Labor [44.91 h]; Foreman [22.45 h]; Plumber Helper [22.45 h]; Plumber [22.45 h]; Operator [44.91 h]; Surveyor [22.45 h]; Surveyor Helper [22.45 h]; Loader [23.04 h]; Water Tanker [23.04 h]; Dump Truck [23.04 h]; Plate Compactor [23.04 h]; Roller Compactor [23.04 h]; Depth: 0.0m - 1.5m [112.14] | 16,146.95 | 16,146.95 | 0.00449622803237392 | Cons. | Z3 | Potable | Cons | HDPEs | SUB.C | Cust. Rd 01 | Pot | CS.UNSC |
| B3.33 14 13-107 |  | Backfilling & Warrning Tape (72.00% Completed) | 68d | 2026-06-29 A | 2026-09-15 A | B3.33 14 13-103 FF | 100% |  |  |  |  |  | Labor [56.13 h]; Foreman [28.07 h]; Operator [112.27 h]; Surveyor [28.07 h]; Surveyor Helper [28.07 h]; Loader [28.8 h]; Water Tanker [28.8 h]; Dump Truck [28.8 h]; Plate Compactor [28.8 h]; Roller Compactor [28.8 h]; Depth: 0.0m - 1.5m [56.07] | 8,073.47 | 8,073.47 | 0.00224811401618696 | Cons. | Z3 | Potable | Cons | HDPEs | SUB.C | Cust. Rd 01 | Pot | CS.UNSC |
| B3.33 14 13-91_R |  | Excavation(Rem) | 3d | 2026-10-08 A | 2026-10-24 | B3.33 14 13.01.0103, B3.33 14 13-91 | 19% | 2.43d | 2026-10-14 | 2026-10-17 | 110.04d | 0d | Labor [8.73 h]; Foreman [4.37 h]; Operator [8.73 h]; Surveyor [4.37 h]; Surveyor Helper [4.37 h]; Excavator (With Bucket) [4.48 h]; Water Tanker [4.48 h]; Dump Truck [4.48 h]; Plate Compactor [4.48 h]; Depth: 0.0m - 1.5m [43.61] | 6,279.37 | 2,776.94 | 0.00449622803237392 | Cons. | Z3 | Potable | Cons | HDPEs | SUB.C | Cust. Rd 01 | Pot | CS.UNSC |
| B3.33 14 13-95_R |  | Sand Bedding(Rem) | 3d | 2026-10-10 A | 2026-10-24 | B3.33 14 13-91_R FF, B3.33 14 13-95 | 19% | 2.43d | 2026-10-14 | 2026-10-17 | 110.89d | 0d | Labor [8.73 h]; Foreman [4.37 h]; Operator [17.46 h]; Surveyor [4.37 h]; Surveyor Helper [4.37 h]; Loader [4.48 h]; Water Tanker [4.48 h]; Dump Truck [4.48 h]; Plate Compactor [4.48 h]; Depth: 0.0m - 1.5m [10.9] | 1,570.13 | 600.05 | 0.00112426239033505 | Cons. | Z3 | Potable | Cons | HDPEs | SUB.C | Cust. Rd 01 | Pot | CS.UNSC |
| B3.33 14 13-99_R |  | Pipe Laying(Rem) | 3d | 2026-10-11 A | 2026-10-24 | B3.33 14 13-95_R FF, B3.33 14 13-99 | 19% | 2.43d | 2026-10-14 | 2026-10-17 | 110.89d | 0d | Labor [8.73 h]; Foreman [4.37 h]; Plumber Helper [4.37 h]; Plumber [4.37 h]; Operator [4.37 h]; Surveyor [4.37 h]; Surveyor Helper [4.37 h]; Mobile Crane [4.48 h]; Depth: 0.0m - 1.5m [98.12] | 14,128.86 | 4,684.32 | 0.0101167184550828 | Cons. | Z3 | Potable | Cons | HDPEs | SUB.C | Cust. Rd 01 | Pot | CS.UNSC |
| B3.33 14 13-103_R |  | Embedment & Test(Rem) | 2.12d | 2026-10-12 A | 2026-10-24 | B3.33 14 13-99_R FF, B3.33 14 13-103 | 19% | 1.72d | 2026-10-14 | 2026-10-17 | 110.89d | 0d | Labor [17.46 h]; Foreman [8.73 h]; Plumber Helper [8.73 h]; Plumber [8.73 h]; Operator [17.46 h]; Surveyor [8.73 h]; Surveyor Helper [8.73 h]; Loader [8.96 h]; Water Tanker [8.96 h]; Dump Truck [8.96 h]; Plate Compactor [8.96 h]; Roller Compactor [8.96 h]; Depth: 0.0m - 1.5m [43.61] | 6,279.37 | 1,488.24 | 0.00449622803237392 | Cons. | Z3 | Potable | Cons | HDPEs | SUB.C | Cust. Rd 01 | Pot | CS.UNSC |
| B3.33 14 13-107_R |  | Backfilling & Warrning Tape(Rem) | 2.4d | 2026-10-13 A | 2026-10-24 | B3.33 14 13-103_R FF, B3.33 14 13-107 | 19% | 1.95d | 2026-10-14 | 2026-10-17 | 110.89d |  | Labor [21.83 h]; Foreman [10.91 h]; Operator [43.66 h]; Surveyor [10.91 h]; Surveyor Helper [10.91 h]; Loader [11.2 h]; Water Tanker [11.2 h]; Dump Truck [11.2 h]; Plate Compactor [11.2 h]; Roller Compactor [11.2 h]; Depth: 0.0m - 1.5m [21.8] | 3,139.68 | 322.6 | 0.00224811401618696 | Cons. | Z3 | Potable | Cons | HDPEs | SUB.C | Cust. Rd 01 | Pot | CS.UNSC |

| ID | WBS | Activity | Duration | Start | Finish | Predecessors | Complete | Remaining | Planned start | Planned finish | Total float | Free float | Resources | Cost | Actual cost | Weight % | DMM2 Weekly Progress | DMM2 Zones | Networks & Stations | DMM2 Phases | UNASCO | Networks Components | Subcontractors works | Dmm2 Roads | Yellow Sheet |
| --- | --- | --- | --- | --- | --- | --- | --- | --- | --- | --- | --- | --- | --- | --- | --- | --- | --- | --- | --- | --- | --- | --- | --- | --- | --- |
|  | Depth: 1.51m - 2.5m | **Depth: 1.51m - 2.5m** |  | 2026-06-10 | 2026-10-25 |  |  |  |  |  |  |  |  |  |  |  |  |  |  |  |  |  |  |  |  |
| B3.33 14 13-93 |  | Excavation (72.00% Completed) | 84d | 2026-06-10 A | 2026-09-15 A | B3.33 14 13-91 SS | 100% |  |  |  |  |  | Labor [22.45 h]; Foreman [11.23 h]; Operator [22.45 h]; Surveyor [11.23 h]; Surveyor Helper [11.23 h]; Excavator (With Bucket) [11.52 h]; Water Tanker [11.52 h]; Dump Truck [11.52 h]; Plate Compactor [11.52 h]; Depth: 1.51m - 2.5m |  |  | 0.000145557831170628 | Cons. | Z3 | Potable | Cons | CS.UNSC | HDPEs | SUB.C | Cust. Rd 01 | Pot |
| B3.33 14 13-97 |  | Sand Bedding (72.00% Completed) | 82d | 2026-06-13 A | 2026-09-15 A | B3.33 14 13-93 FF | 100% |  |  |  |  |  | Labor [22.45 h]; Foreman [11.23 h]; Operator [44.91 h]; Surveyor [11.23 h]; Surveyor Helper [11.23 h]; Loader [11.52 h]; Water Tanker [11.52 h]; Dump Truck [11.52 h]; Plate Compactor [11.52 h]; Depth: 1.51m - 2.5m |  |  | 3.61452332437126E-005 | Cons. | Z3 | Potable | Cons | CS.UNSC | HDPEs | SUB.C | Cust. Rd 01 | Pot |
| B3.33 14 13-101 |  | Pipe Laying (72.00% Completed) | 79d | 2026-06-16 A | 2026-09-15 A | B3.33 14 13-97 FF | 100% |  |  |  |  |  | Labor [22.45 h]; Foreman [11.23 h]; Plumber Helper [11.23 h]; Plumber [11.23 h]; Operator [11.23 h]; Surveyor [11.23 h]; Surveyor Helper [11.23 h]; Mobile Crane [11.52 h]; Depth: 1.51m - 2.5m |  |  | 0.000327260895584966 | Cons. | Z3 | Potable | Cons | CS.UNSC | HDPEs | SUB.C | Cust. Rd 01 | Pot |
| B3.33 14 13-105 |  | Embedment & Test (72.00% Completed) | 77d | 2026-06-18 A | 2026-09-15 A | B3.33 14 13-101 FF | 100% |  |  |  |  |  | Labor [44.91 h]; Foreman [22.45 h]; Plumber Helper [22.45 h]; Plumber [22.45 h]; Operator [44.91 h]; Surveyor [22.45 h]; Surveyor Helper [22.45 h]; Loader [23.04 h]; Water Tanker [23.04 h]; Dump Truck [23.04 h]; Plate Compactor [23.04 h]; Roller Compactor [23.04 h]; Depth: 1.51m - 2.5m |  |  | 0.000145557831170628 | Cons. | Z3 | Potable | Cons | CS.UNSC | HDPEs | SUB.C | Cust. Rd 01 | Pot |
| B3.33 14 13-109 |  | Backfilling & Warrning Tape (72.00% Completed) | 74d | 2026-06-22 A | 2026-09-15 A | B3.33 14 13-105 SS | 100% |  |  |  |  |  | Labor [56.13 h]; Foreman [28.07 h]; Operator [112.27 h]; Surveyor [28.07 h]; Surveyor Helper [28.07 h]; Loader [28.8 h]; Water Tanker [28.8 h]; Dump Truck [28.8 h]; Plate Compactor [28.8 h]; Roller Compactor [28.8 h]; Depth: 1.51m - 2.5m |  |  | 7.27789155853129E-005 | Cons. | Z3 | Potable | Cons | CS.UNSC | HDPEs | SUB.C | Cust. Rd 01 | Pot |
| B3.33 14 13-101_R |  | Pipe Laying(Rem) | 3d | 2026-10-21 | 2026-10-24 | B3.33 14 13-97_R FF, B3.33 14 13-101 |  |  |  |  | 110.04d | 0d | Labor [8.73 h]; Foreman [4.37 h]; Plumber Helper [4.37 h]; Plumber [4.37 h]; Operator [4.37 h]; Surveyor [4.37 h]; Surveyor Helper [4.37 h]; Mobile Crane [4.48 h]; Depth: 1.51m - 2.5m |  |  | 0.000327260895584966 | Cons. | Z3 | Potable | Cons | CS.UNSC | HDPEs | SUB.C | Cust. Rd 01 | Pot |
| B3.33 14 13-93_R |  | Excavation(Rem) | 3d | 2026-10-21 | 2026-10-24 | B3.33 14 13-91_R SS, B3.33 14 13-93 |  |  |  |  | 110.04d | 0d | Labor [8.73 h]; Foreman [4.37 h]; Operator [8.73 h]; Surveyor [4.37 h]; Surveyor Helper [4.37 h]; Excavator (With Bucket) [4.48 h]; Water Tanker [4.48 h]; Dump Truck [4.48 h]; Plate Compactor [4.48 h]; Depth: 1.51m - 2.5m |  |  | 0.000145557831170628 | Cons. | Z3 | Potable | Cons | CS.UNSC | HDPEs | SUB.C | Cust. Rd 01 | Pot |
| B3.33 14 13-97_R |  | Sand Bedding(Rem) | 3d | 2026-10-21 | 2026-10-24 | B3.33 14 13-93_R FF, B3.33 14 13-97 |  |  |  |  | 110.04d | 0d | Labor [8.73 h]; Foreman [4.37 h]; Operator [17.46 h]; Surveyor [4.37 h]; Surveyor Helper [4.37 h]; Loader [4.48 h]; Water Tanker [4.48 h]; Dump Truck [4.48 h]; Plate Compactor [4.48 h]; Depth: 1.51m - 2.5m |  |  | 3.61452332437126E-005 | Cons. | Z3 | Potable | Cons | CS.UNSC | HDPEs | SUB.C | Cust. Rd 01 | Pot |
| B3.33 14 13-105_R |  | Embedment & Test(Rem) | 2.12d | 2026-10-21 | 2026-10-24 | B3.33 14 13-101_R FF, B3.33 14 13-105 |  |  |  |  | 110.04d | 0d | Labor [17.46 h]; Foreman [8.73 h]; Plumber Helper [8.73 h]; Plumber [8.73 h]; Operator [17.46 h]; Surveyor [8.73 h]; Surveyor Helper [8.73 h]; Loader [8.96 h]; Water Tanker [8.96 h]; Dump Truck [8.96 h]; Plate Compactor [8.96 h]; Roller Compactor [8.96 h]; Depth: 1.51m - 2.5m |  |  | 0.000145557831170628 | Cons. | Z3 | Potable | Cons | CS.UNSC | HDPEs | SUB.C | Cust. Rd 01 | Pot |
| B3.33 14 13-109_R |  | Backfilling & Warrning Tape(Rem) | 2.4d | 2026-10-21 | 2026-10-25 | B3.33 14 13-105_R SS, B3.33 14 13-109 |  |  |  |  | 110.04d |  | Labor [21.83 h]; Foreman [10.91 h]; Operator [43.66 h]; Surveyor [10.91 h]; Surveyor Helper [10.91 h]; Loader [11.2 h]; Water Tanker [11.2 h]; Dump Truck [11.2 h]; Plate Compactor [11.2 h]; Roller Compactor [11.2 h]; Depth: 1.51m - 2.5m |  |  | 7.27789155853129E-005 | Cons. | Z3 | Potable | Cons | CS.UNSC | HDPEs | SUB.C | Cust. Rd 01 | Pot |
|  | Fire Fighting | **Fire Fighting Network** |  | 2026-09-20 | 2026-11-24 |  |  |  |  |  |  |  |  |  |  |  |  |  |  |  |  |  |  |  |  |
|  | HDPE | **HDPE Pipes** |  | 2026-09-20 | 2026-10-27 |  |  |  |  |  |  |  |  |  |  |  |  |  |  |  |  |  |  |  |  |
|  | ?250mm | **?250mm** |  | 2026-09-20 | 2026-10-27 |  |  |  |  |  |  |  |  |  |  |  |  |  |  |  |  |  |  |  |  |
|  | Depth: 0.0m - 1.5m | **Depth: 0.0m - 1.5m** |  | 2026-09-20 | 2026-10-26 |  |  |  |  |  |  |  |  |  |  |  |  |  |  |  |  |  |  |  |  |
| B3.1. 33 14 13-1191 |  | Excavation | 4d | 2026-09-20 A | 2026-09-24 A | B3.33 14 13-91_R, B3.33 14 13-93_R | 100% |  |  |  |  |  | Labor [31.18 h]; Foreman [15.59 h]; Operator [31.18 h]; Surveyor [15.59 h]; Surveyor Helper [15.59 h]; Excavator (With Bucket) [16 h]; Water Tanker [16 h]; Dump Truck [16 h]; Plate Compactor [16 h]; Depth: 0.0m - 1.5m [131.51] | 62,927.13 | 62,927.13 | 0.0135564090273793 | Cons. | Z3 | Fire | Cons | CS.UNSC | HDPEs | SUB.C | Cust. Rd 01 | Fire |
| B3.1. 33 14 13-1195 |  | Sand Bedding | 4d | 2026-09-26 A | 2026-09-29 A | B3.1. 33 14 13-1191 | 100% |  |  |  |  |  | Labor [31.18 h]; Foreman [15.59 h]; Operator [62.37 h]; Surveyor [15.59 h]; Surveyor Helper [15.59 h]; Loader [16 h]; Water Tanker [16 h]; Dump Truck [16 h]; Plate Compactor [16 h]; Depth: 0.0m - 1.5m [32.88] | 15,733.37 | 15,733.37 | 0.00338944352179868 | Cons. | Z3 | Fire | Cons | CS.UNSC | HDPEs | SUB.C | Cust. Rd 01 | Fire |
| B3.1. 33 14 13-1199 |  | Pipe Laying | 4d | 2026-09-30 A | 2026-10-04 A | B3.1. 33 14 13-1195 | 100% |  |  |  |  |  | Labor [31.18 h]; Foreman [15.59 h]; Plumber Helper [15.59 h]; Plumber [15.59 h]; Operator [15.59 h]; Surveyor [15.59 h]; Surveyor Helper [15.59 h]; Mobile Crane [16 h]; Depth: 0.0m - 1.5m [295.89] | 141,587.64 | 141,587.64 | 0.0305022615765573 | Cons. | Z3 | Fire | Cons | CS.UNSC | HDPEs | SUB.C | Cust. Rd 01 | Fire |
| B3.1. 33 14 13-11103 |  | Embedment & Test | 6d | 2026-10-03 A | 2026-10-05 A | B3.1. 33 14 13-1199 | 100% |  | 2026-10-05 | 2026-10-11 |  |  | Labor [62.37 h]; Foreman [31.18 h]; Plumber Helper [31.18 h]; Plumber [31.18 h]; Operator [62.37 h]; Surveyor [31.18 h]; Surveyor Helper [31.18 h]; Loader [32 h]; Water Tanker [32 h]; Dump Truck [32 h]; Plate Compactor [32 h]; Roller Compactor [32 h]; Depth: 0.0m - 1.5m [131.51] | 62,927.13 | 62,927.13 | 0.0135564090273793 | Cons. | Z3 | Fire | Cons | CS.UNSC | HDPEs | SUB.C | Cust. Rd 01 | Fire |
| B3.1. 33 14 13-11107 |  | Backfilling & Warrning Tape | 5d | 2026-10-06 A | 2026-10-26 | B3.1. 33 14 13-11103, B3.33 14 19.01.fh33, B3.33 05 63.02.79, B3.33 14 19.01.fh48_R, B3.33 05 63.02.64 | 12% | 4.4d | 2026-12-06 | 2026-12-10 | 98.92d | 8.12d | Labor [77.96 h]; Foreman [38.98 h]; Operator [155.92 h]; Surveyor [38.98 h]; Surveyor Helper [38.98 h]; Loader [40 h]; Water Tanker [40 h]; Dump Truck [40 h]; Plate Compactor [40 h]; Roller Compactor [40 h]; Depth: 0.0m - 1.5m [65.75] | 31,460.4 | 11,763.76 | 0.00677752198378195 | Cons. | Z3 | Fire | Cons | CS.UNSC | HDPEs | SUB.C | Cust. Rd 01 | Fire |
|  | Depth: 1.51m - 2.5m | **Depth: 1.51m - 2.5m** |  | 2026-10-04 | 2026-10-27 |  |  |  |  |  |  |  |  |  |  |  |  |  |  |  |  |  |  |  |  |
| B3.1. 33 14 13-1193 |  | Excavation | 4d | 2026-10-04 A | 2026-10-25 | B3.33 14 13-91_R, B3.33 14 13-93_R | 12% | 3.52d | 2026-10-18 | 2026-10-21 | 109.8d |  | Labor [31.18 h]; Foreman [15.59 h]; Operator [31.18 h]; Surveyor [15.59 h]; Surveyor Helper [15.59 h]; Excavator (With Bucket) [16 h]; Water Tanker [16 h]; Dump Truck [16 h]; Plate Compactor [16 h]; Depth: 1.51m - 2.5m [8.22] | 4,294.65 | 2,174.48 | 0.000399426118713958 | Cons. | Z3 | Fire | Cons | CS.UNSC | HDPEs | SUB.C | Cust. Rd 01 | Fire |
| B3.1. 33 14 13-1197 |  | Sand Bedding | 4d | 2026-10-05 A | 2026-10-25 | B3.1. 33 14 13-1193 | 12% | 3.52d | 2026-10-22 | 2026-10-26 | 109.8d |  | Labor [31.18 h]; Foreman [15.59 h]; Operator [62.37 h]; Surveyor [15.59 h]; Surveyor Helper [15.59 h]; Loader [16 h]; Water Tanker [16 h]; Dump Truck [16 h]; Plate Compactor [16 h]; Depth: 1.51m - 2.5m [2.06] | 1,073.66 | 506.93 | 9.98565296784896E-005 | Cons. | Z3 | Fire | Cons | CS.UNSC | HDPEs | SUB.C | Cust. Rd 01 | Fire |
| B3.1. 33 14 13-11101 |  | Pipe Laying | 4d | 2026-10-07 A | 2026-10-25 | B3.1. 33 14 13-1197 | 12% | 3.52d | 2026-10-27 | 2026-10-31 | 90.8d | 0d | Labor [31.18 h]; Foreman [15.59 h]; Plumber Helper [15.59 h]; Plumber [15.59 h]; Operator [15.59 h]; Surveyor [15.59 h]; Surveyor Helper [15.59 h]; Mobile Crane [16 h]; Depth: 1.51m - 2.5m [18.5] | 9,662.95 | 3,770.45 | 0.00089870876710641 | Cons. | Z3 | Fire | Cons | CS.UNSC | HDPEs | SUB.C | Cust. Rd 01 | Fire |
| B3.1. 33 14 13-11105 |  | Embedment & Test | 6d | 2026-10-10 A | 2026-10-27 | B3.1. 33 14 13-11101 | 12% | 5.28d | 2026-11-01 | 2026-11-07 | 84.04d | 0d | Labor [62.37 h]; Foreman [31.18 h]; Plumber Helper [31.18 h]; Plumber [31.18 h]; Operator [62.37 h]; Surveyor [31.18 h]; Surveyor Helper [31.18 h]; Loader [32 h]; Water Tanker [32 h]; Dump Truck [32 h]; Plate Compactor [32 h]; Roller Compactor [32 h]; Depth: 1.51m - 2.5m [8.22] | 4,294.65 | 1,110.53 | 0.000399426118713958 | Cons. | Z3 | Fire | Cons | CS.UNSC | HDPEs | SUB.C | Cust. Rd 01 | Fire |
| B3.1. 33 14 13-11109 |  | Backfilling & Warrning Tape | 5d | 2026-10-12 A | 2026-10-26 | B3.1. 33 14 13-11105, B3.1. 33 14 13-20, B3.1. 33 14 13-22, B3.1. 33 14 13-1117, B3.33 05 63.02.46 | 12% | 4.4d | 2026-11-26 | 2026-12-01 | 103.92d | 13.12d | Labor [77.96 h]; Foreman [38.98 h]; Operator [155.92 h]; Surveyor [38.98 h]; Surveyor Helper [38.98 h]; Loader [40 h]; Water Tanker [40 h]; Dump Truck [40 h]; Plate Compactor [40 h]; Roller Compactor [40 h]; Depth: 1.51m - 2.5m [4.11] | 2,147.32 | 402.49 | 0.00019971305935698 | Cons. | Z3 | Fire | Cons | CS.UNSC | HDPEs | SUB.C | Cust. Rd 01 | Fire |

| ID | WBS | Activity | Duration | Start | Finish | Predecessors | Total float | Free float | Resources | Cost | Weight % | DMM2 Weekly Progress | DMM2 Zones | Networks & Stations | DMM2 Phases | UNASCO | Networks Components | Subcontractors works | Dmm2 Roads | Yellow Sheet | All Electrical Scope |
| --- | --- | --- | --- | --- | --- | --- | --- | --- | --- | --- | --- | --- | --- | --- | --- | --- | --- | --- | --- | --- | --- |
|  | Valves & Chambers | **Valves & Chambers** |  | 2026-10-27 | 2026-11-24 |  |  |  |  |  |  |  |  |  |  |  |  |  |  |  |  |
|  | 2 | **Air Valves** |  | 2026-10-27 | 2026-11-24 |  |  |  |  |  |  |  |  |  |  |  |  |  |  |  |  |
|  | 4 | **Air valves on less than 315 mm. (In Chamber)** |  | 2026-10-27 | 2026-11-24 |  |  |  |  |  |  |  |  |  |  |  |  |  |  |  |  |
| B3.33 05 63.02.62 |  | Land Adjustment & Compaction | 4d | 2026-10-27 | 2026-11-01 | B3.1. 33 14 13-11105, B3.1. 33 14 13-11103 | 84.04d | 0d | Labor [31.18 h]; Foreman [15.59 h]; Operator [62.37 h]; Surveyor [15.59 h]; Surveyor Helper [15.59 h]; Excavator (With Bucket) [16 h]; Water Tanker [16 h]; Dump Truck [16 h]; Plate Compactor [16 h]; FF Air valve Dia. 50 mm on pipes with Dia. less than 315 mm [0.18]; FF Air valve chamber; on less than 315 mm Dia. pipeline [0.18] | 4,485.6 | 0.000842899444995834 | Cons. | Z3 | Fire | Cons | CS.UNSC | Val&Chs | SUB.C | Cust. Rd 01 | Fire |  |
| B3.33 05 63.02.60 |  | Foundations | 5d | 2026-11-01 | 2026-11-07 | B3.33 05 63.02.62 | 84.04d | 0d | Labor [46.78 h]; Foreman [23.39 h]; Laboratory Officer [23.39 h]; Carpenter [23.39 h]; Steelfixer [23.39 h]; Mason [23.39 h]; FF Air valve Dia. 50 mm on pipes with Dia. less than 315 mm [0.18]; FF Air valve chamber; on less than 315 mm Dia. pipeline [0.24] | 5,821.24 | 0.00109388285056526 | Cons. | Z3 | Fire | Cons | CS.UNSC | Val&Chs | SUB.C | Cust. Rd 01 | Fire |  |
| B3.33 05 63.02.63 |  | Chambers Walls Conc Cast In Situ | 5d | 2026-11-07 | 2026-11-12 | B3.33 05 63.02.60 | 84.04d | 0d | Labor [46.78 h]; Foreman [23.39 h]; Laboratory Officer [23.39 h]; Carpenter [23.39 h]; Steelfixer [23.39 h]; Mason [23.39 h]; FF Air valve Dia. 50 mm on pipes with Dia. less than 315 mm [0.24]; FF Air valve chamber; on less than 315 mm Dia. pipeline [0.24] | 5,980.8 | 0.00112386592666111 | Cons. | Z3 | Fire | Cons | CS.UNSC | Val&Chs | SUB.C | Cust. Rd 01 | Fire |  |
| B3.33 05 63.02.61 |  | Chamber Curing, Finishing & Steel Cover | 6d | 2026-11-12 | 2026-11-19 | B3.33 05 63.02.63 | 84.04d | 0d | Labor [62.37 h]; Mason [31.18 h]; FF Air valve Dia. 50 mm on pipes with Dia. less than 315 mm [0.24]; FF Air valve chamber; on less than 315 mm Dia. pipeline [0.18] | 4,645.16 | 0.000872882521091683 | Cons. | Z3 | Fire | Cons | CS.UNSC | Val&Chs | SUB.C | Cust. Rd 01 | Fire |  |
| B3.33 05 63.02.64 |  | Valve & Fitting Installation | 4d | 2026-11-19 | 2026-11-24 | B3.33 05 63.02.61 | 84.04d |  | Labor [62.37 h]; Plumber Helper [31.18 h]; Plumber [31.18 h]; Operator [62.37 h]; Boom Truck [32 h]; FF Air valve Dia. 50 mm on pipes with Dia. less than 315 mm [0.38]; FF Air valve chamber; on less than 315 mm Dia. pipeline [0.38] | 9,344.99 | 0.001756040510408 | Cons. | Z3 | Fire | Cons | CS.UNSC | Val&Chs | SUB.C | Cust. Rd 01 | Fire |  |
|  | 3 | **Fire Hydrant** |  | 2026-10-25 | 2026-11-10 |  |  |  |  |  |  |  |  |  |  |  |  |  |  |  |  |
| B3.33 14 19.01.fh35 |  | Riser Pipe & Flanged Fittings Installation | 4d | 2026-10-25 | 2026-10-29 | B3.1. 33 14 13-11101, B3.1. 33 14 13-1199 | 90.8d | 0d | Labor [31.18 h]; Plumber Helper [15.59 h]; Welder [15.59 h]; Plumber [15.59 h]; Surveyor [15.59 h]; Surveyor Helper [15.59 h]; Welding Machine [16 h]; 3-outlet fire hydrant (2 x 2.5 inch and 1 x 4.5 inch) in the form of a separate dry vacuum cylinder [1.49] | 16,415.29 | 0.00314407764631429 | Cons. | Z3 | Fire | Cons | CS.UNSC | FH | SUB.C | Cust. Rd 01 | Fire |  |
| B3.33 14 19.01.fh34 |  | Firehydrant Fixing/Installation | 5d | 2026-10-29 | 2026-11-04 | B3.33 14 19.01.fh35 | 90.8d | 0d | Labor [46.78 h]; Foreman [23.39 h]; Plumber Helper [23.39 h]; Plumber [23.39 h]; Operator [46.78 h]; Surveyor [23.39 h]; Surveyor Helper [23.39 h]; JCB [24 h]; 3-outlet fire hydrant (2 x 2.5 inch and 1 x 4.5 inch) in the form of a separate dry vacuum cylinder [4.47] | 49,245.86 | 0.0094322329389428 | Cons. | Z3 | Fire | Cons | CS.UNSC | FH | SUB.C | Cust. Rd 01 | Fire |  |
| B3.33 14 19.01.fh36 |  | Backfilling & Compaction | 5d | 2026-11-04 | 2026-11-10 | B3.33 14 19.01.fh34, B3.1. 33 14 13-11107, B3.33 05 63.01.64, B3.33 05 63.02.84, DMM2-Proc-Delv-5908_R | 90.8d | 0d | Labor [77.96 h]; Foreman [38.98 h]; Operator [77.96 h]; Surveyor [38.98 h]; Surveyor Helper [38.98 h]; Loader [40 h]; Water Tanker [40 h]; Dump Truck [40 h]; Plate Compactor [40 h]; 3-outlet fire hydrant (2 x 2.5 inch and 1 x 4.5 inch) in the form of a separate dry vacuum cylinder [1.49] | 16,415.29 | 0.00314407764631429 | Cons. | Z3 | Fire | Cons | CS.UNSC | FH | SUB.C | Cust. Rd 01 | Fire |  |
|  | Dry Networks | **Dry Networks** |  | 2026-09-02 | 2026-12-19 |  |  |  |  |  |  |  |  |  |  |  |  |  |  |  |  |
|  | MV | **Medium Voltage Network** |  | 2026-10-21 | 2026-11-05 |  |  |  |  |  |  |  |  |  |  |  |  |  |  |  |  |
|  | Duct Banks | **Duct Banks** |  | 2026-10-21 | 2026-11-05 |  |  |  |  |  |  |  |  |  |  |  |  |  |  |  |  |
|  | 2 Way | **2 Way** |  | 2026-10-21 | 2026-11-05 |  |  |  |  |  |  |  |  |  |  |  |  |  |  |  |  |
| B2.31 23 00.640 |  | Excavation | 4d | 2026-10-21 | 2026-10-25 | B5.33 31 00.01.02.38_R | 92.32d | 0d | Labor [46.78 h]; Foreman [23.39 h]; Operator [46.78 h]; Surveyor [23.39 h]; Surveyor Helper [23.39 h]; Excavator (With Bucket) [24 h]; Water Tanker [24 h]; Dump Truck [24 h]; Plate Compactor [24 h]; Excavation for Trench size 40cm wide and 80cm deep (for 1 cable) [100]; Duct bank for MV cables UPVC (2xDia. 150mm) [17.08] | 8,056.11 | 0.00333826948299228 | Cons. | Z3 | MV | Cons |  | Cbl&Dct | SUB.C | Cust. Rd 01 | MV | allElec |
| B2.33 71 00.288 |  | Shuttering, Steel Fixing Incl. UPVC Pipe & Conc. Cast | 7d | 2026-10-26 | 2026-11-02 | B2.31 23 00.640 | 95.32d | 0d | Labor [93.55 h]; Laboratory Officer [46.78 h]; Carpenter [46.78 h]; Steelfixer [46.78 h]; Mason [46.78 h]; Surveyor [46.78 h]; Surveyor Helper [46.78 h]; Excavation for Trench size 40cm wide and 80cm deep (for 1 cable) [300]; Duct bank for MV cables UPVC (2xDia. 150mm) [41.34] | 20,822.61 | 0.00874532009243357 | Cons. | Z3 | MV | Cons |  | Cbl&Dct | SUB.C | Cust. Rd 01 | MV | allElec |
| B2.33 71 00.289 |  | Backfilling & Warrning Tape | 3d | 2026-11-03 | 2026-11-05 | B2.33 71 00.288 | 95.32d | 18d | Labor [77.96 h]; Foreman [38.98 h]; Operator [155.92 h]; Surveyor [38.98 h]; Surveyor Helper [38.98 h]; Loader [40 h]; Water Tanker [40 h]; Dump Truck [40 h]; Plate Compactor [40 h]; Roller Compactor [40 h]; Excavation for Trench size 40cm wide and 80cm deep (for 1 cable) [100]; Duct bank for MV cables UPVC (2xDia. 150mm) [21.92] | 9,690.92 | 0.00395856834529251 | Cons. | Z3 | MV | Cons |  | Cbl&Dct | SUB.C | Cust. Rd 01 | MV | allElec |
|  | LV Network | **Low Voltage Network** |  | 2026-10-24 | 2026-12-19 |  |  |  |  |  |  |  |  |  |  |  |  |  |  |  |  |
|  | Duct Banks | **Duct Banks** |  | 2026-10-26 | 2026-12-19 |  |  |  |  |  |  |  |  |  |  |  |  |  |  |  |  |
|  | 2 Way | **2 Way** |  | 2026-10-26 | 2026-12-19 |  |  |  |  |  |  |  |  |  |  |  |  |  |  |  |  |
| B2.33 71 00 02 112 |  | Excavation | 2d | 2026-10-26 | 2026-10-27 | B2.31 23 00.640 | 92.32d | 0d | Labor [31.18 h]; Foreman [15.59 h]; Operator [31.18 h]; Surveyor [15.59 h]; Surveyor Helper [15.59 h]; Excavator (With Bucket) [16 h]; Water Tanker [16 h]; Dump Truck [16 h]; Plate Compactor [16 h]; Excavation for Trench size 40cm wide and 65cm deep (for 1 cable); Duct bank for LV cables UPVC (2xDia. 110mm) [10]; SL LV Excavation for Trench size 40cm wide and 65cm deep (for 1 cable) | 2,755.67 | 0.00112258975602026 | Cons. | Z3 | LV | Cons |  | Cbl&Dct | SUB.C | Cust. Rd 01 | LV | allElec |
| B2.33 71 00 02 113 |  | Shuttering, Steel Fixing Incl. UPVC Pipe & Conc. Cast | 3d | 2026-10-28 | 2026-10-31 | B2.33 71 00 02 112 | 101.32d | 39d | Labor [46.78 h]; Laboratory Officer [23.39 h]; Carpenter [23.39 h]; Steelfixer [23.39 h]; Mason [23.39 h]; Surveyor [23.39 h]; Surveyor Helper [23.39 h]; Excavation for Trench size 40cm wide and 65cm deep (for 1 cable); Duct bank for LV cables UPVC (2xDia. 110mm) [30]; SL LV Excavation for Trench size 40cm wide and 65cm deep (for 1 cable) | 8,270.78 | 0.00336904054414932 | Cons. | Z3 | LV | Cons |  | Cbl&Dct | SUB.C | Cust. Rd 01 | LV | allElec |
| B2.33 71 00 02 114 |  | Backfilling & Warrning Tape | 3d | 2026-12-16 | 2026-12-19 | B2.33 71 00 02 113, B2.33 71 00 02 144, B2.33 71 00 02 132, B2.33 71 00 02 135, B2.33 71 00 02 117, B2.33 71 00 02 120, B2.33 71 00 02 123 | 62.32d | 0d | Labor [62.37 h]; Foreman [31.18 h]; Operator [124.74 h]; Surveyor [31.18 h]; Surveyor Helper [31.18 h]; Loader [32 h]; Water Tanker [32 h]; Dump Truck [32 h]; Plate Compactor [32 h]; Roller Compactor [32 h]; Excavation for Trench size 40cm wide and 65cm deep (for 1 cable); Duct bank for LV cables UPVC (2xDia. 110mm) [10]; SL LV Excavation for Trench size 40cm wide and 65cm deep (for 1 cable) | 2,755.67 | 0.00112258975602026 | Cons. | Z3 | LV | Cons |  | Cbl&Dct | SUB.C | Cust. Rd 01 | LV | allElec |

| ID | WBS | Activity | Duration | Start | Finish | Predecessors | Complete | Remaining | Planned start | Planned finish | Total float | Free float | Resources | Cost | Actual cost | Weight % | DMM2 Weekly Progress | DMM2 Zones | Networks & Stations | DMM2 Phases | Networks Components | All Electrical Scope | Subcontractors works | Dmm2 Roads | Yellow Sheet |
| --- | --- | --- | --- | --- | --- | --- | --- | --- | --- | --- | --- | --- | --- | --- | --- | --- | --- | --- | --- | --- | --- | --- | --- | --- | --- |
|  | 4 Way | **4 Way** |  | 2026-10-28 | 2026-11-05 |  |  |  |  |  |  |  |  |  |  |  |  |  |  |  |  |  |  |  |  |
| B2.33 71 00 02 115 |  | Excavation | 2d | 2026-10-28 | 2026-10-29 | B2.33 71 00 02 112 |  |  |  |  | 92.32d | 0d | Labor [31.18 h]; Foreman [15.59 h]; Operator [31.18 h]; Surveyor [15.59 h]; Surveyor Helper [15.59 h]; Excavator (With Bucket) [16 h]; Water Tanker [16 h]; Dump Truck [16 h]; Plate Compactor [16 h]; Excavation for Trench size 60cm wide and 65cm deep ( for 2 cables); Duct bank for LV cables UPVC (4xDia. 110mm) [12.4]; SL LV Excavation for Trench size 60cm wide and 65cm deep ( for 2 cables) | 5,225.87 |  | 0.00384843522581632 | Cons. | Z3 | LV | Cons | Cbl&Dct | allElec | SUB.C | Cust. Rd 01 | LV |
| B2.33 71 00 02 116 |  | Shuttering, Steel Fixing Incl. UPVC Pipe & Conc. Cast | 3d | 2026-10-31 | 2026-11-02 | B2.33 71 00 02 115 |  |  |  |  | 96.32d | 0d | Labor [46.78 h]; Laboratory Officer [23.39 h]; Carpenter [23.39 h]; Steelfixer [23.39 h]; Mason [23.39 h]; Surveyor [23.39 h]; Surveyor Helper [23.39 h]; Excavation for Trench size 60cm wide and 65cm deep ( for 2 cables); Duct bank for LV cables UPVC (4xDia. 110mm) [37.2]; SL LV Excavation for Trench size 60cm wide and 65cm deep ( for 2 cables) | 15,677.61 |  | 0.011545305677449 | Cons. | Z3 | LV | Cons | Cbl&Dct | allElec | SUB.C | Cust. Rd 01 | LV |
| B2.33 71 00 02 117 |  | Backfilling & Warrning Tape | 3d | 2026-11-03 | 2026-11-05 | B2.33 71 00 02 116 |  |  |  |  | 96.32d | 34d | Labor [62.37 h]; Foreman [31.18 h]; Operator [124.74 h]; Surveyor [31.18 h]; Surveyor Helper [31.18 h]; Loader [32 h]; Water Tanker [32 h]; Dump Truck [32 h]; Plate Compactor [32 h]; Roller Compactor [32 h]; Excavation for Trench size 60cm wide and 65cm deep ( for 2 cables); Duct bank for LV cables UPVC (4xDia. 110mm) [12.4]; SL LV Excavation for Trench size 60cm wide and 65cm deep ( for 2 cables) | 5,225.87 |  | 0.00384843522581632 | Cons. | Z3 | LV | Cons | Cbl&Dct | allElec | SUB.C | Cust. Rd 01 | LV |
|  | 6 Way | **6 Way** |  | 2026-10-31 | 2026-11-08 |  |  |  |  |  |  |  |  |  |  |  |  |  |  |  |  |  |  |  |  |
| B2.33 71 00 02 118 |  | Excavation | 2d | 2026-10-31 | 2026-11-01 | B2.33 71 00 02 115 |  |  |  |  | 92.32d | 0d | Labor [31.18 h]; Foreman [15.59 h]; Operator [31.18 h]; Surveyor [15.59 h]; Surveyor Helper [15.59 h]; Excavator (With Bucket) [16 h]; Water Tanker [16 h]; Dump Truck [16 h]; Plate Compactor [16 h]; Excavation for Trench size 90cm wide and 65cm deep ( for 3 cables); Duct bank for LV cables UPVC (6xDia. 110mm) [5]; SL LV Excavation for Trench size 90cm wide and 65cm deep ( for 3 cables) | 2,844.71 |  | 0.00162137899963146 | Cons. | Z3 | LV | Cons | Cbl&Dct | allElec | SUB.C | Cust. Rd 01 | LV |
| B2.33 71 00 02 119 |  | Shuttering, Steel Fixing Incl. UPVC Pipe & Conc. Cast | 3d | 2026-11-02 | 2026-11-04 | B2.33 71 00 02 118 |  |  |  |  | 94.32d | 0d | Labor [46.78 h]; Laboratory Officer [23.39 h]; Carpenter [23.39 h]; Steelfixer [23.39 h]; Mason [23.39 h]; Surveyor [23.39 h]; Surveyor Helper [23.39 h]; Excavation for Trench size 90cm wide and 65cm deep ( for 3 cables); Duct bank for LV cables UPVC (6xDia. 110mm) [15]; SL LV Excavation for Trench size 90cm wide and 65cm deep ( for 3 cables) | 8,534.12 |  | 0.00486436653485481 | Cons. | Z3 | LV | Cons | Cbl&Dct | allElec | SUB.C | Cust. Rd 01 | LV |
| B2.33 71 00 02 120 |  | Backfilling & Warrning Tape | 3d | 2026-11-05 | 2026-11-08 | B2.33 71 00 02 119 |  |  |  |  | 94.32d | 32d | Labor [62.37 h]; Foreman [31.18 h]; Operator [124.74 h]; Surveyor [31.18 h]; Surveyor Helper [31.18 h]; Loader [32 h]; Water Tanker [32 h]; Dump Truck [32 h]; Plate Compactor [32 h]; Roller Compactor [32 h]; Excavation for Trench size 90cm wide and 65cm deep ( for 3 cables); Duct bank for LV cables UPVC (6xDia. 110mm) [5]; SL LV Excavation for Trench size 90cm wide and 65cm deep ( for 3 cables) | 2,844.71 |  | 0.00162160853559189 | Cons. | Z3 | LV | Cons | Cbl&Dct | allElec | SUB.C | Cust. Rd 01 | LV |
|  | 8 Way | **8 Way** |  | 2026-11-02 | 2026-11-10 |  |  |  |  |  |  |  |  |  |  |  |  |  |  |  |  |  |  |  |  |
| B2.33 71 00 02 121 |  | Excavation | 2d | 2026-11-02 | 2026-11-03 | B2.33 71 00 02 118 |  |  |  |  | 92.32d | 0d | Labor [31.18 h]; Foreman [15.59 h]; Operator [31.18 h]; Surveyor [15.59 h]; Surveyor Helper [15.59 h]; Excavator (With Bucket) [16 h]; Water Tanker [16 h]; Dump Truck [16 h]; Plate Compactor [16 h]; Excavation for Trench size 120cm wide and 65cm deep ( for 4 cables); Duct bank for LV cables UPVC (8xDia. 110mm) [3.67]; SL LV Excavation for Trench size 120cm wide and 65cm deep ( for 4 cables) | 2,680.93 |  | 0.00142427063447639 | Cons. | Z3 | LV | Cons | Cbl&Dct | allElec | SUB.C | Cust. Rd 01 | LV |
| B2.33 71 00 02 122 |  | Shuttering, Steel Fixing Incl. UPVC Pipe & Conc. Cast | 3d | 2026-11-04 | 2026-11-07 | B2.33 71 00 02 121 |  |  |  |  | 92.32d | 0d | Labor [46.78 h]; Laboratory Officer [23.39 h]; Carpenter [23.39 h]; Steelfixer [23.39 h]; Mason [23.39 h]; Surveyor [23.39 h]; Surveyor Helper [23.39 h]; Excavation for Trench size 120cm wide and 65cm deep ( for 4 cables); Duct bank for LV cables UPVC (8xDia. 110mm) [11]; SL LV Excavation for Trench size 120cm wide and 65cm deep ( for 4 cables) | 8,035.48 |  | 0.00426936886402274 | Cons. | Z3 | LV | Cons | Cbl&Dct | allElec | SUB.C | Cust. Rd 01 | LV |
| B2.33 71 00 02 123 |  | Backfilling & Warrning Tape | 3d | 2026-11-08 | 2026-11-10 | B2.33 71 00 02 122 |  |  |  |  | 92.32d | 30d | Labor [62.37 h]; Foreman [31.18 h]; Operator [124.74 h]; Surveyor [31.18 h]; Surveyor Helper [31.18 h]; Loader [32 h]; Water Tanker [32 h]; Dump Truck [32 h]; Plate Compactor [32 h]; Roller Compactor [32 h]; Excavation for Trench size 120cm wide and 65cm deep ( for 4 cables); Duct bank for LV cables UPVC (8xDia. 110mm) [3.65]; SL LV Excavation for Trench size 120cm wide and 65cm deep ( for 4 cables) | 2,666.32 |  | 0.00141715501970302 | Cons. | Z3 | LV | Cons | Cbl&Dct | allElec | SUB.C | Cust. Rd 01 | LV |
|  | Cables | **Cables** |  | 2026-10-24 | 2026-11-09 |  |  |  |  |  |  |  |  |  |  |  |  |  |  |  |  |  |  |  |  |
|  | 4C,10+1C,10mm2 | **4C,10+1C,10mm2** |  | 2026-10-24 | 2026-10-26 |  |  |  |  |  |  |  |  |  |  |  |  |  |  |  |  |  |  |  |  |
| B2.33 71 00 01 12 |  | Cable Pulling | 2d | 2026-10-24 | 2026-10-26 | B1.2.32 11 26.01.12_R |  |  |  |  | 106.62d | 10.3d | Labor [62.37 h]; Foreman [31.18 h]; Surveyor [31.18 h]; Surveyor Helper [31.18 h]; Electrician [31.18 h]; Cable, Copper 4x10mm2/ CU/XLPE/SWA/PVC + 1x10mm2 CU/PVC [1535.55] | 95,723.28 |  | 0.0182956258973869 | Cons. | Z3 | LV | Cons | Cbl&Dct | allElec | SUB.C | Cust. Rd 01 | LV |
|  | 4C,50+1C,25mm2 | **4C,50+1C,25mm2** |  | 2026-11-08 | 2026-11-09 |  |  |  |  |  |  |  |  |  |  |  |  |  |  |  |  |  |  |  |  |
| B2.33 71 00 01 13 |  | Cable Pulling | 2d | 2026-11-08 | 2026-11-09 | B2.33 71 00 01 12, B2.33 71 00 02 119, B2.33 71 00 02 122 |  |  |  |  | 96.32d |  | Labor [62.37 h]; Foreman [31.18 h]; Surveyor [31.18 h]; Surveyor Helper [31.18 h]; Electrician [31.18 h]; Cable, Copper 4x50mm2/ CU/XLPE/PVC +1x25mm2 CU/PVC [137.49] | 25,833.3 |  | 0.00493828300375468 | Cons. | Z3 | LV | Cons | Cbl&Dct | allElec | SUB.C | Cust. Rd 01 | LV |
|  | Street Lighting | **Street Lighting** |  | 2026-09-02 | 2026-11-09 |  |  |  |  |  |  |  |  |  |  |  |  |  |  |  |  |  |  |  |  |
|  | SL Poles | **SL Poles** |  | 2026-09-02 | 2026-11-05 |  |  |  |  |  |  |  |  |  |  |  |  |  |  |  |  |  |  |  |  |
|  | Pole (10 M Sngl Arm) | **Pole (10 M Single Arm)** |  | 2026-09-02 | 2026-10-25 |  |  |  |  |  |  |  |  |  |  |  |  |  |  |  |  |  |  |  |  |
| B2.33 71 16.71 |  | Excavation (74.36% Completed) | 11.2d | 2026-09-02 A | 2026-09-15 A | B3.33 14 13-109 SS, B3.33 14 13-107 SS | 100% |  |  |  |  |  | Labor [23.19 h]; Foreman [11.59 h]; Operator [23.19 h]; Surveyor [11.59 h]; Surveyor Helper [11.59 h]; Excavator (With Bucket) [11.9 h]; Dump Truck [11.9 h]; Lighting poles with 1 arm, height of ( 10) meters [4.91] | 43,796.92 | 43,796.92 | 0.0112471278804954 | Cons. | Z3 | SL | Cons | Pls&Lmn | allElec | SUB.C | Cust. Rd 01 | SL |
| B2.33 71 16.72 |  | PC & RC Foundation (74.36% Completed) | 10.2d | 2026-09-03 A | 2026-09-15 A | B2.33 71 16.71 SS | 100% |  |  |  |  |  | Labor [46.38 h]; Foreman [23.19 h]; Laboratory Officer [23.19 h]; Carpenter [23.19 h]; Steelfixer [23.19 h]; Mason [23.19 h]; Lighting poles with 1 arm, height of ( 10) meters [4.91] | 43,796.92 | 43,796.92 | 0.0112471278804954 | Cons. | Z3 | SL | Cons | Pls&Lmn | allElec | SUB.C | Cust. Rd 01 | SL |
| B2.33 71 16.73 |  | Lighting Poles Installation Incl power box, Cables (74.36% Completed) | 9.2d | 2026-09-05 A | 2026-09-15 A | B2.33 71 16.72 SS | 100% |  |  |  |  |  | Labor [57.97 h]; Operator [57.97 h]; Mobile Crane [29.74 h]; Electrician [28.99 h]; Lighting poles with 1 arm, height of ( 10) meters [9.82] | 87,593.85 | 87,593.85 | 0.0224942557609906 | Cons. | Z3 | SL | Cons | Pls&Lmn | allElec | SUB.C | Cust. Rd 01 | SL |
| B2.33 71 16.71_R |  | Excavation(Rem) | 2d | 2026-10-14 A | 2026-10-22 | B3.33 14 13-109_R SS, B3.33 14 13-107_R SS, B2.33 71 16.71 | 42% | 1.16d | 2026-10-14 | 2026-10-17 | 112.16d |  | Labor [8 h]; Foreman [4 h]; Operator [8 h]; Surveyor [4 h]; Surveyor Helper [4 h]; Excavator (With Bucket) [4.1 h]; Dump Truck [4.1 h]; Lighting poles with 1 arm, height of ( 10) meters [1.69] | 15,101.58 | 6,342.66 | 0.0112471278804954 | Cons. | Z3 | SL | Cons | Pls&Lmn | allElec | SUB.C | Cust. Rd 01 | SL |
| B2.33 71 16.72_R |  | PC & RC Foundation(Rem) | 2d | 2026-10-14 A | 2026-10-22 | B2.33 71 16.71_R SS, B2.33 71 16.72 | 42% | 1.16d | 2026-10-14 | 2026-10-17 | 112.16d |  | Labor [15.99 h]; Foreman [8 h]; Laboratory Officer [8 h]; Carpenter [8 h]; Steelfixer [8 h]; Mason [8 h]; Lighting poles with 1 arm, height of ( 10) meters [1.69] | 15,101.58 | 6,342.66 | 0.0112471278804954 | Cons. | Z3 | SL | Cons | Pls&Lmn | allElec | SUB.C | Cust. Rd 01 | SL |
| B2.33 71 16.73_R |  | Lighting Poles Installation Incl power box, Cables(Rem) | 2d | 2026-10-14 A | 2026-10-22 | B2.33 71 16.72_R SS, B2.33 71 16.73 | 42% | 1.16d | 2026-10-14 | 2026-10-17 | 110.16d | 0d | Labor [19.99 h]; Operator [19.99 h]; Mobile Crane [10.26 h]; Electrician [9.99 h]; Lighting poles with 1 arm, height of ( 10) meters [3.38] | 30,203.15 | 12,685.32 | 0.0224942557609906 | Cons. | Z3 | SL | Cons | Pls&Lmn | allElec | SUB.C | Cust. Rd 01 | SL |
| B2.33 71 16.74 |  | Backfilling, Grouting & Chamfering | 3d | 2026-10-19 A | 2026-10-22 | B2.26.56.19.11 | 42% | 1.74d |  |  | 21.58d | 1.42d | Labor [77.96 h]; Foreman [38.98 h]; Mason [38.98 h]; Operator [77.96 h]; Surveyor [38.98 h]; Surveyor Helper [38.98 h]; Loader [40 h]; Water Tanker [40 h]; Dump Truck [40 h]; Plate Compactor [40 h]; Lighting poles with 1 arm, height of ( 10) meters [6.6] | 58,898.5 | 24,737.37 | 0.0112471278804954 | Cons. | Z3 | SL | Cons | Pls&Lmn | allElec | SUB.C | Cust. Rd 01 | SL |
| B2.26.56.19.11 |  | Lighting Luminares Inst | 2d | 2026-10-22 | 2026-10-25 | B2.33 71 16.73_R |  |  |  |  | 110.16d |  | Labor [46.78 h]; Operator [46.78 h]; Manlift [24 h]; Street Lighting( LED), Lamp Lumen: 14560, Luminare Lumen:12700 , complete with control gear and lamp, (80) WATT. [30.11] | 27,918.13 |  | 0.0047113256383061 | Cons. | Z3 | SL | Cons | Pls&Lmn | allElec | SUB.C | Cust. Rd 01 | SL |

| ID | WBS | Activity | Duration | Start | Finish | Predecessors | Complete | Remaining | Planned start | Planned finish | Total float | Free float | Resources | Cost | Actual cost | Weight % | DMM2 Weekly Progress | DMM2 Zones | Networks & Stations | DMM2 Phases | Networks Components | All Electrical Scope | Subcontractors works | Dmm2 Roads | Yellow Sheet |
| --- | --- | --- | --- | --- | --- | --- | --- | --- | --- | --- | --- | --- | --- | --- | --- | --- | --- | --- | --- | --- | --- | --- | --- | --- | --- |
|  | Pole (10 M Dbl Arm) | **Pole (10 M Double Arm)** |  | 2026-09-05 | 2026-10-29 |  |  |  |  |  |  |  |  |  |  |  |  |  |  |  |  |  |  |  |  |
| B2.33 71 16.75 |  | Excavation (74.36% Completed) | 9.2d | 2026-09-05 A | 2026-09-15 A | B2.33 71 16.71 SS | 100% |  |  |  |  |  | Labor [23.19 h]; Foreman [11.59 h]; Operator [23.19 h]; Surveyor [11.59 h]; Surveyor Helper [11.59 h]; Excavator (With Bucket) [11.9 h]; Dump Truck [11.9 h]; Lighting poles with 2 arms, height of ( 10) meters [1.49] | 13,747.92 | 13,747.92 | 0.00352048130754849 | Cons. | Z3 | SL | Cons | Pls&Lmn | allElec | SUB.C | Cust. Rd 01 | SL |
| B2.33 71 16.76 |  | PC & RC Foundation (74.36% Completed) | 8.2d | 2026-09-06 A | 2026-09-15 A | B2.33 71 16.75 SS | 100% |  |  |  |  |  | Labor [46.38 h]; Foreman [23.19 h]; Laboratory Officer [23.19 h]; Carpenter [23.19 h]; Steelfixer [23.19 h]; Mason [23.19 h]; Lighting poles with 2 arms, height of ( 10) meters [1.49] | 13,747.92 | 13,747.92 | 0.00352048130754849 | Cons. | Z3 | SL | Cons | Pls&Lmn | allElec | SUB.C | Cust. Rd 01 | SL |
| B2.33 71 16.77 |  | Lighting Poles Installation Incl power box, Cables (74.36% Completed) | 6.2d | 2026-09-08 A | 2026-09-15 A | B2.33 71 16.76 SS | 100% |  |  |  |  |  | Labor [57.97 h]; Operator [57.97 h]; Mobile Crane [29.74 h]; Electrician [28.99 h]; Lighting poles with 2 arms, height of ( 10) meters [2.98] | 27,495.84 | 27,495.84 | 0.00704096261509691 | Cons. | Z3 | SL | Cons | Pls&Lmn | allElec | SUB.C | Cust. Rd 01 | SL |
| B2.33 71 16.75_R |  | Excavation(Rem) | 2d | 2026-10-10 A | 2026-10-29 | B2.33 71 00 02 154 FF, B2.33 71 16.71_R SS, B2.33 71 16.75 | 42% | 1.16d | 2026-10-22 | 2026-10-25 | 17.48d | 0d | Labor [8 h]; Foreman [4 h]; Operator [8 h]; Surveyor [4 h]; Surveyor Helper [4 h]; Excavator (With Bucket) [4.1 h]; Dump Truck [4.1 h]; Lighting poles with 2 arms, height of ( 10) meters [0.51] | 4,740.41 | 3,672.87 | 0.00352048130754849 | Cons. | Z3 | SL | Cons | Pls&Lmn | allElec | SUB.C | Cust. Rd 01 | SL |
| B2.33 71 16.76_R |  | PC & RC Foundation(Rem) | 2d | 2026-10-12 A | 2026-10-22 | B2.33 71 16.75_R SS, B2.33 71 16.76 | 42% | 1.16d | 2026-10-22 | 2026-10-25 | 112.16d |  | Labor [15.99 h]; Foreman [8 h]; Laboratory Officer [8 h]; Carpenter [8 h]; Steelfixer [8 h]; Mason [8 h]; Lighting poles with 2 arms, height of ( 10) meters [0.51] | 4,740.41 | 3,435.02 | 0.00352048130754849 | Cons. | Z3 | SL | Cons | Pls&Lmn | allElec | SUB.C | Cust. Rd 01 | SL |
| B2.33 71 16.77_R |  | Lighting Poles Installation Incl power box, Cables(Rem) | 2d | 2026-10-14 A | 2026-10-22 | B2.33 71 16.76_R SS, B2.33 71 16.77 | 42% | 1.16d | 2026-10-22 | 2026-10-25 | 20.16d | 0d | Labor [19.99 h]; Operator [19.99 h]; Mobile Crane [10.26 h]; Electrician [9.99 h]; Lighting poles with 2 arms, height of ( 10) meters [1.03] | 9,480.81 | 6,086.39 | 0.00704096261509691 | Cons. | Z3 | SL | Cons | Pls&Lmn | allElec | SUB.C | Cust. Rd 01 | SL |
| B2.26.56.19.12 |  | Lighting Luminares Inst | 2d | 2026-10-22 | 2026-10-25 | B2.33 71 16.77_R |  |  |  |  | 20.16d | 0d | Labor [46.78 h]; Operator [46.78 h]; Manlift [24 h]; Street Lighting( LED), Lamp Lumen: 14560, Luminare Lumen:12700 , complete with control gear and lamp, (80) WATT. [30.11] | 27,918.13 |  | 0.0047113256383061 | Cons. | Z3 | SL | Cons | Pls&Lmn | allElec | SUB.C | Cust. Rd 01 | SL |
| B2.33 71 16.78 |  | Backfilling, Grouting & Chamfering | 3d | 2026-10-25 | 2026-10-28 | B2.26.56.19.12, B2.33 71 16.74 |  |  |  |  | 20.16d | 2.16d | Labor [93.55 h]; Foreman [46.78 h]; Mason [46.78 h]; Operator [93.55 h]; Surveyor [46.78 h]; Surveyor Helper [46.78 h]; Loader [48 h]; Water Tanker [48 h]; Dump Truck [48 h]; Plate Compactor [48 h]; Lighting poles with 2 arms, height of ( 10) meters [2.01] | 18,488.33 |  | 0.00352048130754849 | Cons. | Z3 | SL | Cons | Pls&Lmn | allElec | SUB.C | Cust. Rd 01 | SL |
|  | Pole (12 M Sngl Arm) | **Pole (12 M Single Arm)** |  | 2026-09-03 | 2026-11-05 |  |  |  |  |  |  |  |  |  |  |  |  |  |  |  |  |  |  |  |  |
| B2.33 71 16.116 |  | Excavation (74.36% Completed) | 10.2d | 2026-09-03 A | 2026-09-15 A | B2.33 71 16.75 SS | 100% |  |  |  |  |  | Labor [34.78 h]; Foreman [17.39 h]; Operator [34.78 h]; Surveyor [17.39 h]; Surveyor Helper [17.39 h]; Excavator (With Bucket) [17.85 h]; Dump Truck [17.85 h]; Lighting poles with 1 arm, height of ( 12 ) meters [4.02] | 41,651.03 | 41,651.03 | 0.0107113644558805 | Cons. | Z3 | SL | Cons | Pls&Lmn | allElec | SUB.C | Cust. Rd 01 | SL |
| B2.33 71 16.126 |  | PC & RC Foundation (74.36% Completed) | 9.2d | 2026-09-05 A | 2026-09-15 A | B2.33 71 16.116 SS | 100% |  |  |  |  |  | Labor [57.97 h]; Foreman [28.99 h]; Laboratory Officer [28.99 h]; Carpenter [28.99 h]; Steelfixer [28.99 h]; Mason [28.99 h]; Lighting poles with 1 arm, height of ( 12 ) meters [4.02] | 41,651.03 | 41,651.03 | 0.0107113644558805 | Cons. | Z3 | SL | Cons | Pls&Lmn | allElec | SUB.C | Cust. Rd 01 | SL |
| B2.33 71 16.136 |  | Lighting Poles Installation Incl power box, Cables (74.36% Completed) | 6.2d | 2026-09-08 A | 2026-09-15 A | B2.33 71 16.126 SS | 100% |  |  |  |  |  | Labor [69.57 h]; Operator [69.57 h]; Mobile Crane [35.69 h]; Electrician [34.78 h]; Lighting poles with 1 arm, height of ( 12 ) meters [8.03] | 83,302.06 | 83,302.06 | 0.0214227289117611 | Cons. | Z3 | SL | Cons | Pls&Lmn | allElec | SUB.C | Cust. Rd 01 | SL |
| B2.33 71 16.116_R |  | Excavation(Rem) | 2d | 2026-10-28 | 2026-10-31 | B2.33 71 19 182 FF, B2.33 71 16.78 FF, B2.33 71 16.75_R SS, B2.33 71 16.116 |  |  |  |  | 18d | 0d | Labor [11.99 h]; Foreman [6 h]; Operator [11.99 h]; Surveyor [6 h]; Surveyor Helper [6 h]; Excavator (With Bucket) [6.15 h]; Dump Truck [6.15 h]; Lighting poles with 1 arm, height of ( 12 ) meters [1.38] | 14,361.65 |  | 0.0107113644558805 | Cons. | Z3 | SL | Cons | Pls&Lmn | allElec | SUB.C | Cust. Rd 01 | SL |
| B2.33 71 16.126_R |  | PC & RC Foundation(Rem) | 2d | 2026-10-28 | 2026-10-31 | B2.33 71 16.116_R SS, B2.33 71 16.126 |  |  |  |  | 18d | 0d | Labor [19.99 h]; Foreman [9.99 h]; Laboratory Officer [9.99 h]; Carpenter [9.99 h]; Steelfixer [9.99 h]; Mason [9.99 h]; Lighting poles with 1 arm, height of ( 12 ) meters [1.38] | 14,361.65 |  | 0.0107113644558805 | Cons. | Z3 | SL | Cons | Pls&Lmn | allElec | SUB.C | Cust. Rd 01 | SL |
| B2.33 71 16.136_R |  | Lighting Poles Installation Incl power box, Cables(Rem) | 2d | 2026-10-28 | 2026-10-31 | B2.33 71 16.126_R SS, B2.33 71 16.136 |  |  |  |  | 18d | 0d | Labor [23.99 h]; Operator [23.99 h]; Mobile Crane [12.31 h]; Electrician [11.99 h]; Lighting poles with 1 arm, height of ( 12 ) meters [2.77] | 28,723.3 |  | 0.0214227289117611 | Cons. | Z3 | SL | Cons | Pls&Lmn | allElec | SUB.C | Cust. Rd 01 | SL |
| B2.26.56.19.29 |  | Lighting Luminares Inst | 2d | 2026-10-31 | 2026-11-02 | B2.33 71 16.136_R |  |  |  |  | 18d | 0d | Labor [62.37 h]; Operator [62.37 h]; Manlift [32 h]; Street Lighting( LED), Lamp Lumen: 24286, Luminare Lumen:20914, complete with control gear and lamp, (140) WATT. [32] | 34,108.54 |  | 0.00549811017242346 | Cons. | Z3 | SL | Cons | Pls&Lmn | allElec | SUB.C | Cust. Rd 01 | SL |
| B2.33 71 16.146 |  | Backfilling, Grouting & Chamfering | 3d | 2026-11-02 | 2026-11-05 | B2.26.56.19.29 |  |  |  |  | 18d | 0d | Labor [109.15 h]; Foreman [54.57 h]; Mason [54.57 h]; Operator [109.15 h]; Surveyor [54.57 h]; Surveyor Helper [54.57 h]; Loader [56 h]; Water Tanker [56 h]; Dump Truck [56 h]; Plate Compactor [56 h]; Lighting poles with 1 arm, height of ( 12 ) meters [5.4] | 56,012.68 |  | 0.0107113644558805 | Cons. | Z3 | SL | Cons | Pls&Lmn | allElec | SUB.C | Cust. Rd 01 | SL |
|  | Earthing | **Earthing** |  | 2026-10-31 | 2026-11-09 |  |  |  |  |  |  |  |  |  |  |  |  |  |  |  |  |  |  |  |  |
| B2.33 71 19 38 |  | Land Adjustment | 2d | 2026-10-31 | 2026-11-02 | B2.33 71 16.136_R, B2.33 71 16.67 |  |  |  |  | 22d | 0d | Labor [46.78 h]; Foreman [23.39 h]; Operator [31.18 h]; Surveyor [7.8 h]; Surveyor Helper [7.8 h]; Excavator (With Bucket) [24 h]; Water Tanker [24 h]; Dump Truck [24 h]; Roller Compactor [24 h]; SL Earthing Including lighting poles circuits [0.45] | 904.39 |  | 0.000454679838542865 | Cons. | Z3 | SL | Cons | Cables | allElec | SUB.C | Cust. Rd 01 | SL |
| B2.33 71 19 39 |  | Earth Rods & Conduits | 3d | 2026-11-02 | 2026-11-05 | B2.33 71 19 38 |  |  |  |  | 22d | 1d | Labor [46.78 h]; Foreman [23.39 h]; Electrician [23.39 h]; SL Earthing Including lighting poles circuits [1.33] | 2,672.96 |  | 0.00134383152280447 | Cons. | Z3 | SL | Cons | Cables | allElec | SUB.C | Cust. Rd 01 | SL |
| B2.33 71 19 40 |  | Backfilling | 2d | 2026-11-07 | 2026-11-09 | B2.33 71 19 39, B2.33 71 00 02 75 |  |  |  |  | 21d | 3d | Labor [93.55 h]; Foreman [46.78 h]; Operator [93.55 h]; Surveyor [46.78 h]; Surveyor Helper [46.78 h]; Loader [48 h]; Water Tanker [48 h]; Dump Truck [48 h]; Plate Compactor [48 h]; SL Earthing Including lighting poles circuits [0.45] | 904.39 |  | 0.000454679838542865 | Cons. | Z3 | SL | Cons | Cables | allElec | SUB.C | Cust. Rd 01 | SL |
|  | Earth & Road Works | **Earth & Road Works** |  | 2025-12-11 | 2026-12-23 |  |  |  |  |  |  |  |  |  |  |  |  |  |  |  |  |  |  |  |  |
|  | Earth Works | **Earth Works** |  | 2025-12-11 | 2026-03-16 |  |  |  |  |  |  |  |  |  |  |  |  |  |  |  |  |  |  |  |  |
| B1.2.31 23 16.01.12 |  | Roadway Excavation | 74.87d | 2025-12-11 A | 2026-03-16 A | DMM2-Eng-MS-78 | 100% |  |  |  |  |  | Roadway Excavation for cuttings (all types of soil) [20873.8]; Labor [28.35 h]; Foreman [14.17 h]; Operator [28.35 h]; Surveyor [14.17 h]; Surveyor Helper [14.17 h]; Excavator (With Bucket) [16 h]; Water Tanker [16 h]; Dump Truck [16 h] | 311,562.29 | 311,562.29 | 3.80455854414926E-005 | Cons. | Z3 | Roads | Cons |  |  |  | Cust. Rd 01 |  |
| B1.2.31 23 23.01.12 |  | Engineering Backfiling | 74.03d | 2025-12-11 A | 2026-03-15 A | B1.2.31 23 16.01.12 | 100% |  |  |  |  |  | Embankment backfiling [10276.4]; Labor [42.52 h]; Foreman [21.26 h]; Operator [42.52 h]; Surveyor [21.26 h]; Surveyor Helper [21.26 h]; Loader [24 h]; Water Tanker [24 h]; Dump Truck [24 h]; Plate Compactor [24 h]; Roller Compactor [24 h] | 279,703.67 | 279,703.67 | 0.0371219022790607 | Cons. | Z3 | Roads | Cons |  |  |  | Cust. Rd 01 |  |

| ID | WBS | Activity | Duration | Start | Finish | Predecessors | Complete | Remaining | Planned start | Planned finish | Total float | Free float | Resources | Cost | Actual cost | Weight % | DMM2 Weekly Progress | DMM2 Zones | Networks & Stations | DMM2 Phases | Networks Components | Dmm2 Roads | Yellow Sheet |
| --- | --- | --- | --- | --- | --- | --- | --- | --- | --- | --- | --- | --- | --- | --- | --- | --- | --- | --- | --- | --- | --- | --- | --- |
|  | Earth Layers | **Earth Layers** |  | 2026-03-15 | 2026-10-22 |  |  |  |  |  |  |  |  |  |  |  |  |  |  |  |  |  |  |
| B1.2.32 11 13.01.12 |  | Subgrade (65.00% Completed) | 149.97d | 2026-03-15 A | 2026-09-15 A | B1.2.31 23 23.01.12 | 100% |  |  |  |  |  | Subgrade [620.13]; Labor [20.27 h]; Foreman [10.14 h]; Operator [20.27 h]; Surveyor [10.14 h]; Surveyor Helper [10.14 h]; Grader [10.4 h]; Loader [10.4 h]; Water Tanker [10.4 h]; Dump Truck [10.4 h]; Plate Compactor [10.4 h]; Roller Compactor [10.4 h] | 18,512.16 | 18,512.16 | 0.0167013366433933 | Cons. | Z3 | Roads | Cons | Roads | Cust. Rd 01 | Sub |
| B1.2.32 11 23.01.12 |  | Aggregate Base Course | 2d | 2026-05-21 A | 2026-10-21 | B1.2.32 11 13.01.12 SS+5d, B1.2.32 11 13.01.12_R | 65% | 0.7d | 2026-05-21 | 2026-05-24 | 53.62d | 0d | Aggregate base course [635.87]; Labor [28.35 h]; Foreman [14.17 h]; Operator [28.35 h]; Surveyor [14.17 h]; Surveyor Helper [14.17 h]; Grader [16 h]; Loader [16 h]; Water Tanker [16 h]; Dump Truck [16 h]; Plate Compactor [16 h]; Roller Compactor [16 h] | 55,271.48 | 35,926.46 | 0.0314780672284068 | Cons. | Z3 | Roads | Cons | Roads | Cust. Rd 01 | Agg |
| B1.2.32 11 23.01.18 |  | DRAINAGE LAYERS CRUSHED STONE (AGGREGATE) | 44d | 2026-06-14 A | 2026-08-03 A | B1.2.32 11 23.01.12 | 100% |  |  |  |  |  | 30 cm thick. filter layer of crushed stone (aggregate) (3/4" to 1") [350]; Labor [28.35 h]; Foreman [14.17 h]; Operator [28.35 h]; Surveyor [14.17 h]; Surveyor Helper [14.17 h]; Grader [16 h]; Loader [16 h]; Water Tanker [16 h]; Dump Truck [16 h]; Plate Compactor [16 h]; Roller Compactor [16 h] | 70,064.58 | 70,064.58 | 0.0261670994891714 | Cons. | Z3 | Roads | Cons | Roads | Cust. Rd 01 |  |
| B1.2.32 11 13.01.12_R |  | Subgrade(Rem) | 2d | 2026-10-21 | 2026-10-22 | B1.2.31 23 23.01.12, B1.2.32 11 13.01.12 |  |  |  |  | 50.18d | 0d | Subgrade [333.92]; Labor [10.91 h]; Foreman [5.46 h]; Operator [10.91 h]; Surveyor [5.46 h]; Surveyor Helper [5.46 h]; Grader [5.6 h]; Loader [5.6 h]; Water Tanker [5.6 h]; Dump Truck [5.6 h]; Plate Compactor [5.6 h]; Roller Compactor [5.6 h] | 9,968.09 |  | 0.0167013366433933 | Cons. | Z3 | Roads | Cons | Roads | Cust. Rd 01 | Sub |
|  | Interlock | **Interlock** |  | 2026-11-12 | 2026-11-16 |  |  |  |  |  |  |  |  |  |  |  |  |  |  |  |  |  |  |
| B1.2.32 14 13.13.12 |  | 60mm thick - Interlocking Block Pavers | 3d | 2026-11-12 | 2026-11-16 | B2.33 71 19 40, B1.2.32 14 13.13.6 |  |  |  |  | 18d | 0d | 60mm thick - Interlocking block pavers for sidewalks and medians [227.07]; Labor [93.55 h]; Foreman [46.78 h]; Mason [46.78 h]; Operator [93.55 h]; JCB [48 h] | 15,151.97 |  | 0.00841197329151746 | Cons. | Z3 | Roads | Cons | Roads | Cust. Rd 01 |  |
|  | Curbstone | **Curbstone** |  | 2026-11-16 | 2026-12-05 |  |  |  |  |  |  |  |  |  |  |  |  |  |  |  |  |  |  |
|  | Pre Install | **Pre-Installation** |  | 2026-11-16 | 2026-11-23 |  |  |  |  |  |  |  |  |  |  |  |  |  |  |  |  |  |  |
| B2.31 23 00.331 |  | Excavation | 2d | 2026-11-16 | 2026-11-18 | B1.2.32 14 13.13.12 |  |  |  |  | 18d | 0d | Curb Stone, Type K1 [51.81]; Dropped Curb, Type K3 [7.97]; Edge Curb, Type K4 [26.91]; Heel Curb, Type K5 [24.84]; Transition Curb [0.18]; Labor [93.55 h]; Foreman [46.78 h]; Operator [93.55 h]; Surveyor [46.78 h]; Surveyor Helper [46.78 h]; JCB [48 h]; Water Tanker [48 h]; Dump Truck [48 h]; Plate Compactor [48 h] | 8,194.59 |  | 0.00465050447511671 | Cons. | Z3 | Roads | Cons | Roads | Cust. Rd 01 |  |
| B1.2.32 14 13.13.212 |  | PCC | 2d | 2026-11-18 | 2026-11-21 | B2.31 23 00.331 |  |  |  |  | 18d | 0d | Curb Stone, Type K1 [51.81]; Dropped Curb, Type K3 [7.97]; Edge Curb, Type K4 [26.91]; Heel Curb, Type K5 [24.87]; Transition Curb [0.18]; Labor [62.37 h]; Mason [31.18 h]; Surveyor [31.18 h]; Surveyor Helper [31.18 h] | 8,196.53 |  | 0.00465050447511671 | Cons. | Z3 | Roads | Cons | Roads | Cust. Rd 01 |  |
| 32 16 13.0012 |  | Haunching | 2d | 2026-11-21 | 2026-11-23 | B1.2.32 14 13.13.212 |  |  |  |  | 18d | 0d | Curb Stone, Type K1 [51.81]; Dropped Curb, Type K3 [7.97]; Edge Curb, Type K4 [26.91]; Heel Curb, Type K5 [24.87]; Transition Curb [0.18]; Labor [124.74 h]; Carpenter [62.37 h]; Mason [62.37 h]; Surveyor [62.37 h]; Surveyor Helper [62.37 h] | 8,196.53 |  | 0.00465050447511671 | Cons. | Z3 | Roads | Cons | Roads | Cust. Rd 01 |  |
|  | Installation | **Installation** |  | 2026-11-23 | 2026-12-02 |  |  |  |  |  |  |  |  |  |  |  |  |  |  |  |  |  |  |
| B1.2.32 16.13.01.12 |  | Curb Stone, Type K1 | 2d | 2026-11-23 | 2026-11-25 | 32 16 13.0012 |  |  |  |  | 18d | 0d | Curb Stone, Type K1 [155.43]; Labor [62.37 h]; Foreman [31.18 h]; Mason [31.18 h]; Operator [62.37 h]; Surveyor [31.18 h]; Surveyor Helper [31.18 h]; JCB [32 h] | 11,736.29 |  | 0.00692222431806374 | Cons. | Z3 | Roads | Cons | Roads | Cust. Rd 01 |  |
| B1.2.32 16.13.02.11 |  | Dropped Curb, Type K3 | 1d | 2026-11-25 | 2026-11-26 | B1.2.32 16.13.01.12, 32 16 13.0012 |  |  |  |  | 18d | 0d | Dropped Curb, Type K3 [2.26]; Labor [31.18 h]; Foreman [15.59 h]; Mason [15.59 h]; Operator [31.18 h]; Surveyor [15.59 h]; Surveyor Helper [15.59 h]; JCB [16 h] | 182.43 |  | 0.000106615479764912 | Cons. | Z3 | Roads | Cons | Roads | Cust. Rd 01 |  |
| B1.2.32 16.13.03.12 |  | Edge Curb, Type K4 | 2d | 2026-11-26 | 2026-11-29 | B1.2.32 16.13.02.11, 32 16 13.0012 |  |  |  |  | 18d | 0d | Edge Curb, Type K4 [78.76]; Labor [46.78 h]; Foreman [23.39 h]; Mason [23.39 h]; Operator [46.78 h]; Surveyor [23.39 h]; Surveyor Helper [23.39 h]; JCB [24 h] | 5,946.8 |  | 0.00327495830076833 | Cons. | Z3 | Roads | Cons | Roads | Cust. Rd 01 |  |
| B1.2.32 16.13.0412 |  | Heel Curb, Type K5 | 2d | 2026-11-29 | 2026-12-01 | B1.2.32 16.13.03.12, 32 16 13.0012 |  |  |  |  | 18d | 0d | Heel Curb, Type K5 [91.24]; Labor [31.18 h]; Foreman [15.59 h]; Mason [15.59 h]; Operator [31.18 h]; Surveyor [15.59 h]; Surveyor Helper [15.59 h]; JCB [16 h] | 5,847.79 |  | 0.00307776254482229 | Cons. | Z3 | Roads | Cons | Roads | Cust. Rd 01 |  |
| B1.2.32 16.13.05.11 |  | Transition Curb | 1d | 2026-12-01 | 2026-12-02 | B1.2.32 16.13.0412, 32 16 13.0012 |  |  |  |  | 18d | 0d | Transition Curb [0.99]; Labor [31.18 h]; Foreman [15.59 h]; Mason [15.59 h]; Operator [31.18 h]; Surveyor [15.59 h]; Surveyor Helper [15.59 h]; JCB [16 h] | 79.63 |  | 4.83760829737615E-005 | Cons. | Z3 | Roads | Cons | Roads | Cust. Rd 01 |  |
|  | Finishing | **Finishing** |  | 2026-12-02 | 2026-12-05 |  |  |  |  |  |  |  |  |  |  |  |  |  |  |  |  |  |  |
| 32 16 13.012 |  | Finishing, Fareface | 2d | 2026-12-02 | 2026-12-05 | B1.2.32 16.13.01.12, B1.2.32 16.13.02.11, B1.2.32 16.13.03.12, B1.2.32 16.13.0412, B1.2.32 16.13.05.11 |  |  |  |  | 18d | 0d | Curb Stone, Type K1 [34.54]; Dropped Curb, Type K3 [0.49]; Edge Curb, Type K4 [17.94]; Heel Curb, Type K5 [20.28]; Transition Curb [0.18]; Labor [31.18 h]; Mason [15.59 h] | 5,316.59 |  | 0.00300033955650429 | Cons. | Z3 | Roads | Cons | Roads | Cust. Rd 01 |  |
|  | Asphalt Layers | **Asphalt Layers** |  | 2026-05-24 | 2026-12-07 |  |  |  |  |  |  |  |  |  |  |  |  |  |  |  |  |  |  |
| B1.2.32 11 26.01.12 |  | Bituminous Base Course including Prime Coat (MC1) and tack coat (RC2) (74.00% Completed) | 94.47d | 2026-05-24 A | 2026-09-15 A | B1.2.32 11 23.01.12 | 100% |  |  |  |  |  | Bituminous base course(Grading I - Class A) [322.49]; Labor [23.08 h]; Foreman [11.54 h]; Operator [23.08 h]; Surveyor [11.54 h]; Surveyor Helper [11.54 h]; Dump Truck [11.84 h]; Roller Compactor [11.84 h]; MC1/RC2 Sprayer [11.84 h] | 177,251.62 | 177,251.62 | 0.132133165735038 | Cons. | Z3 | Roads | Cons | Roads | Cust. Rd 01 | BBC |
| B1.2.32 11 26.01.12_R |  | Bituminous Base Course including Prime Coat (MC1) and tack coat (RC2)(Rem) | 2d | 2026-10-21 | 2026-10-24 | B1.2.32 11 23.01.12, B1.2.32 11 26.01.12 |  |  |  |  | 53.62d | 0d | Bituminous base course(Grading I - Class A) [113.31]; Labor [8.11 h]; Foreman [4.05 h]; Operator [8.11 h]; Surveyor [4.05 h]; Surveyor Helper [4.05 h]; Dump Truck [4.16 h]; Roller Compactor [4.16 h]; MC1/RC2 Sprayer [4.16 h] | 62,277.6 |  | 0.132133165735038 | Cons. | Z3 | Roads | Cons | Roads | Cust. Rd 01 | BBC |
| B1.2.32 12 16.01.12 |  | Bituminous concrete Wearing Course, including tack coat (RC2) | 2d | 2026-12-05 | 2026-12-07 | B1.2.32 11 26.01.12_R, B7.32 31 26.01-5, 32 16 13.012, 10 14 53.012 |  |  |  |  | 18d | 0d | Bituminous concrete wearing course, after compaction(Grading I - Class A), including tack coat (RC2) [159.46]; Labor [31.18 h]; Foreman [15.59 h]; Operator [31.18 h]; Surveyor [15.59 h]; Surveyor Helper [15.59 h]; Dump Truck [16 h]; Roller Compactor [16 h]; MC1/RC2 Sprayer [16 h] | 94,084.61 |  | 0.0518735630163964 | Cons. | Z3 | Roads | Cons | Roads | Cust. Rd 01 | BWC |

| ID | WBS | Activity | Duration | Start | Finish | Predecessors | Complete | Remaining | Planned start | Planned finish | Total float | Free float | Resources | Cost | Actual cost | Weight % | DMM2 Weekly Progress | DMM2 Zones | Networks & Stations | DMM2 Phases | Networks Components | Dmm2 Roads | Yellow Sheet | Subcontractors works |
| --- | --- | --- | --- | --- | --- | --- | --- | --- | --- | --- | --- | --- | --- | --- | --- | --- | --- | --- | --- | --- | --- | --- | --- | --- |
|  | Pavement Marking | **Pavement Marking** |  | 2026-12-07 | 2026-12-12 |  |  |  |  |  |  |  |  |  |  |  |  |  |  |  |  |  |  |  |
| B1.2.32 17 23.02.12 |  | Retroreflective Thermoplastic Yellow, Traffic lines | 2d | 2026-12-07 | 2026-12-09 | B1.2.32 12 16.01.12 |  |  |  |  | 69d | 0d | Retroreflective Thermoplastic Yellow, Traffic lines [25.91]; Labor [31.18 h]; Mason [15.59 h]; Road Marking Machine [16 h] | 773.39 |  | 0.000388823003303813 | Cons. | Z3 | Roads | Cons | Roads | Cust. Rd 01 |  |  |
| B1.2.32 17 23.01.12 |  | Retroreflective Thermoplastic White Traffic lines | 2d | 2026-12-09 | 2026-12-12 | B1.2.32 12 16.01.12, B1.2.32 17 23.02.12 |  |  |  |  | 69d | 10d | Retroreflective Thermoplastic White Traffic lines [54.05]; Labor [46.78 h]; Mason [23.39 h]; Road Marking Machine [24 h] | 1,613.63 |  | 0.000811251423243381 | Cons. | Z3 | Roads | Cons | Roads | Cust. Rd 01 |  |  |
|  | Traffic Signs | **Traffic Signs** |  | 2026-11-18 | 2026-12-23 |  |  |  |  |  |  |  |  |  |  |  |  |  |  |  |  |  |  |  |
|  | Pre Install | **Pre-Installation** |  | 2026-11-18 | 2026-11-21 |  |  |  |  |  |  |  |  |  |  |  |  |  |  |  |  |  |  |  |
| 10 14 53.012 |  | Foundation | 2d | 2026-11-18 | 2026-11-21 | B2.31 23 00.341 SS |  |  |  |  | 30d | 12d | Traffic signs, ground mounted, 1 Sheet Alumenium, (breakaway) Single post [0.58]; Labor [31.18 h]; Carpenter [15.59 h]; Steelfixer [15.59 h]; Mason [15.59 h]; Surveyor [15.59 h]; Surveyor Helper [15.59 h] | 647.25 |  | 0.000325402537136089 | Cons. | Z3 | Roads | Cons | Roads | Cust. Rd 01 |  |  |
| B2.31 23 00.341 |  | Excavation | 1d | 2026-11-18 | 2026-11-19 | B2.31 23 00.331 |  |  |  |  | 22d | 0d | Traffic signs, ground mounted, 1 Sheet Alumenium, (breakaway) Single post [0.58]; Labor [31.18 h]; Foreman [15.59 h]; Operator [31.18 h]; Surveyor [15.59 h]; Surveyor Helper [15.59 h]; JCB [16 h]; Water Tanker [16 h]; Dump Truck [16 h]; Plate Compactor [16 h] | 647.25 |  | 0.000325402537136089 | Cons. | Z3 | Roads | Cons | Roads | Cust. Rd 01 |  |  |
|  | Installation | **Installation** |  | 2026-12-21 | 2026-12-23 |  |  |  |  |  |  |  |  |  |  |  |  |  |  |  |  |  |  |  |
| B1.2.10 14 53.0112 |  | 1 Sheet Alumenium, Single post | 2d | 2026-12-21 | 2026-12-23 | B1.2.32 17 23.02.12, B1.2.32 17 23.01.12 FF, B1.2.10 14 53.014, B1.2.10 14 14.01.4 |  |  |  |  | 59d | 8.09d | Traffic signs, ground mounted, 1 Sheet Alumenium, (breakaway) Single post [1.41]; Labor [31.18 h]; Foreman [15.59 h]; Operator [31.18 h]; JCB [16 h] | 1,573.48 |  | 0.000791064788554976 | Cons. | Z3 | Roads | Cons | Roads | Cust. Rd 01 |  |  |
|  | Landscape | **Landscape** |  | 2026-08-15 | 2026-12-03 |  |  |  |  |  |  |  |  |  |  |  |  |  |  |  |  |  |  |  |
|  | Fences | **Fences** |  | 2026-08-15 | 2026-12-03 |  |  |  |  |  |  |  |  |  |  |  |  |  |  |  |  |  |  |  |
|  | (ZATCA HCIS) | **Steel fence (ZATCA HCIS)** |  | 2026-08-15 | 2026-12-03 |  |  |  |  |  |  |  |  |  |  |  |  |  |  |  |  |  |  |  |
| B7.32 31 26.01-1 |  | Earthwork (0.00% Completed) | 28d | 2026-08-15 A | 2026-09-15 A | B1.2.32 11 23.01.18 | 100% |  |  |  |  |  | Labor; Foreman; Operator; Surveyor; Surveyor Helper; Excavator (With Bucket); Water Tanker; Dump Truck; Plate Compactor; Steel fence (ZATCA HCIS) |  |  | 0.0145109845928078 | Cons. | Z3 | Landscp | Cons | Fncs&Gt | Cust. Rd 01 | ZTK.Fns |  |
| B7.32 31 26.01-3 |  | Foundation (0.00% Completed) | 25.1d | 2026-08-17 A | 2026-09-15 A | B7.32 31 26.01-1 SS | 100% |  |  |  |  |  | Labor; Laboratory Officer; Carpenter; Steelfixer; Mason; Surveyor; Surveyor Helper; Steel fence (ZATCA HCIS) |  |  | 0.0145109845928078 | Cons. | Z3 | Landscp | Cons | Fncs&Gt | Cust. Rd 01 | ZTK.Fns |  |
| B7.32 31 26.01-1_R |  | Earthwork(Rem) | 5d | 2026-11-14 | 2026-11-19 | B2.31 23 00.341 FF, B7.32 31 26.01-1 |  |  |  |  | 22d | 0d | Labor [46.78 h]; Foreman [23.39 h]; Operator [46.78 h]; Surveyor [23.39 h]; Surveyor Helper [23.39 h]; Excavator (With Bucket) [24 h]; Water Tanker [24 h]; Dump Truck [24 h]; Plate Compactor [24 h]; Steel fence (ZATCA HCIS) [116.81] | 25,743.45 |  | 0.0145109845928078 | Cons. | Z3 | Landscp | Cons | Fncs&Gt | Cust. Rd 01 | ZTK.Fns |  |
| B7.32 31 26.01-3_R |  | Foundation(Rem) | 6d | 2026-11-14 | 2026-11-21 | B7.32 31 26.01-1_R SS, B7.32 31 26.01-3 |  |  |  |  | 22d | 3.18d | Labor [62.37 h]; Laboratory Officer [31.18 h]; Carpenter [31.18 h]; Steelfixer [31.18 h]; Mason [31.18 h]; Surveyor [31.18 h]; Surveyor Helper [31.18 h]; Steel fence (ZATCA HCIS) [116.81] | 25,743.45 |  | 0.0145109845928078 | Cons. | Z3 | Landscp | Cons | Fncs&Gt | Cust. Rd 01 | ZTK.Fns |  |
| B7.32 31 26.01-5 |  | Fence Installation | 8d | 2026-11-24 | 2026-12-03 | B7.32 31 26.01-113, B7.32 31 26.01-3_R, B7.32 31 26.01-8 |  |  |  |  | 18.82d | 0.82d | Labor [93.55 h]; Foreman [46.78 h]; Welder [46.78 h]; Mason [46.78 h]; Operator [93.55 h]; Boom Truck [48 h]; Welding Machine [48 h]; Steel fence (ZATCA HCIS) [545.12] | 120,133.48 |  | 0.0677164508164642 | Cons. | Z3 | Landscp | Cons | Fncs&Gt | Cust. Rd 01 | ZTK.Fns |  |
|  | Sewerage Lift ST | **Sewerage Lift Station** |  | 2025-12-07 | 2026-12-15 |  |  |  |  |  |  |  |  |  |  |  |  |  |  |  |  |  |  |  |
|  | 1 | **Site Preparation & Initial Earthworks** |  | 2025-12-07 | 2026-05-13 |  |  |  |  |  |  |  |  |  |  |  |  |  |  |  |  |  |  |  |
| B5.1.31 23 16.01.1 |  | Excavation for wet well & Chambers | 121d | 2025-12-07 A | 2026-05-09 A | B3.2.31 23 16.01, B1.1.31 23 23.162 | 100% |  |  |  |  |  | Labor [28.35 h]; Foreman [14.17 h]; Operator [28.35 h]; Surveyor [14.17 h]; Surveyor Helper [14.17 h]; Excavator (With Bucket) [16 h]; Water Tanker [16 h]; Dump Truck [16 h]; Roller Compactor [16 h]; Sew. Lft St. Excavation [326] | 14,311.4 | 14,311.4 | 0.00611360202302675 | Cons. | Z3 | Lift | Cons | LftSt |  | Lift.St | SUB.C |
| B5.1.31 23 16.01.3 |  | Embankment Backfiling | 9d | 2026-05-04 A | 2026-05-13 A | B5.1.31 23 16.01.1 | 100% |  |  |  |  |  | Labor [56.7 h]; Foreman [28.35 h]; Operator [56.7 h]; Surveyor [28.35 h]; Surveyor Helper [28.35 h]; Loader [32 h]; Water Tanker [32 h]; Dump Truck [32 h]; Roller Compactor [32 h]; Sew. Lft St. Fill [293.6] | 9,795.7 | 9,795.7 | 0.00603856142057801 | Cons. | Z3 | Lift | Cons | LftSt |  | Lift.St | SUB.C |
|  | 11 | **Underground Concrete Structures & Waterproofing** |  | 2026-10-11 | 2026-10-22 |  |  |  |  |  |  |  |  |  |  |  |  |  |  |  |  |  |  |  |
| B5.1.31 23 16.01.13 |  | Reinforced Concrete Walls | 4d | 2026-10-11 A | 2026-10-22 | B5.1.31 23 16.01.9_R | 50% | 2d | 2026-10-14 | 2026-10-18 | 24.32d | 0d | Labor [77.96 h]; Laboratory Officer [38.98 h]; Carpenter [38.98 h]; Steelfixer [38.98 h]; Mason [38.98 h]; Reinforced Concrete Walls for wet well and valve chamber & screening chamber [60.34] | 83,917.85 | 41,958.93 | 0.0426512514349966 | Cons. | Z3 | Lift | Cons | LftSt |  | Lift.St | SUB.C |
| B5.1.31 23 16.01.15 |  | Water proofing Membrane with protection board | 2d | 2026-10-12 A | 2026-10-21 | B5.1.31 23 16.01.13, B5.1.31 23 16.01.19 | 50% | 1d | 2026-10-22 | 2026-10-24 | 112.32d |  | Labor [46.78 h]; Foreman [23.39 h]; Mason [23.39 h]; Water proofing Membrane with 50mm screed protection fc' 20MPa [67.66]; Water proofing Membrane with protection board [249.53] | 28,830.37 | 22,487.69 | 0.0143421514824134 | Cons. | Z3 | Lift | Cons | LftSt |  | Lift.St | SUB.C |
| B5.1.31 23 16.01.21 |  | Backfilling around underground chambers | 2d | 2026-10-15 A | 2026-10-21 | B5.1.31 23 16.01.15 | 50% | 1d | 2026-10-25 | 2026-10-26 | 25.32d | 0d | Labor [62.37 h]; Foreman [31.18 h]; Operator [62.37 h]; Surveyor [31.18 h]; Surveyor Helper [31.18 h]; Loader [32 h]; Water Tanker [32 h]; Dump Truck [32 h]; Roller Compactor [32 h]; Sew. Lft St. Fill [73.4] | 2,448.92 | 1,665.27 | 0.0015096403551445 | Cons. | Z3 | Lift | Cons | LftSt |  | Lift.St | SUB.C |

| ID | WBS | Activity | Duration | Start | Finish | Predecessors | Complete | Planned start | Planned finish | Total float | Free float | Resources | Cost | Actual cost | Weight % | DMM2 Weekly Progress | DMM2 Zones | Networks & Stations | DMM2 Phases | Networks Components | Subcontractors works | Yellow Sheet |
| --- | --- | --- | --- | --- | --- | --- | --- | --- | --- | --- | --- | --- | --- | --- | --- | --- | --- | --- | --- | --- | --- | --- |
|  | 2 | **Sub-Structure & Foundations** |  | 2026-05-10 | 2026-10-22 |  |  |  |  |  |  |  |  |  |  |  |  |  |  |  |  |  |
| B5.1.31 23 16.01.7 |  | 100 mm thickness lean concrete | 4d | 2026-05-10 A | 2026-05-13 A | B5.1.31 23 16.01.3 | 100% |  |  |  |  | Labor [42.52 h]; Laboratory Officer [21.26 h]; Carpenter [21.26 h]; Mason [21.26 h]; 100 mm thickness lean concrete under the foundation for wet well & valve chamber & Screening chamber & Control room [8.2] | 3,592.58 | 3,592.58 | 0.0015418566341537 | Cons. | Z3 | Lift | Cons | LftSt | SUB.C | Lift.St |
| B5.1.31 23 16.01.9 |  | Footings for wet well & Chambers (30.00% Completed) | 66d | 2026-07-01 A | 2026-09-15 A | B5.1.31 23 16.01.7 | 100% |  |  |  |  | Labor [28.07 h]; Laboratory Officer [14.03 h]; Carpenter [14.03 h]; Steelfixer [14.03 h]; Mason [14.03 h]; Footings for wet well & valve chamber & screening chamber & control room [8.15] | 8,977.64 | 8,977.64 | 0.0121777434104585 | Cons. | Z3 | Lift | Cons | LftSt | SUB.C | Lift.St |
| B5.1.31 23 16.01.9_R |  | Footings for wet well & Chambers(Rem) | 3d | 2026-10-04 A | 2026-10-11 A | B5.1.31 23 16.01.7, B5.1.31 23 16.01.9 | 100% | 2026-10-14 | 2026-10-17 |  |  | Labor [65.49 h]; Laboratory Officer [32.74 h]; Carpenter [32.74 h]; Steelfixer [32.74 h]; Mason [32.74 h]; Footings for wet well & valve chamber & screening chamber & control room [19.03] | 20,947.82 | 20,947.82 | 0.0121777434104585 | Cons. | Z3 | Lift | Cons | LftSt | SUB.C | Lift.St |
| B5.1.31 23 16.01.11 |  | Slab on grade and ground beams | 2d | 2026-10-21 | 2026-10-22 | B5.1.31 23 16.01.9_R |  |  |  | 18.32d | 0d | Labor [31.18 h]; Laboratory Officer [15.59 h]; Steelfixer [15.59 h]; Mason [15.59 h]; Slab on grade and ground beams for control room [4.8] | 3,615.94 |  | 0.000757464647416021 | Cons. | Z3 | Lift | Cons | LftSt | SUB.C | Lift.St |
|  | 10 | **Superstructure - Control Room & Roof Slabs** |  | 2026-10-24 | 2026-11-03 |  |  |  |  |  |  |  |  |  |  |  |  |  |  |  |  |  |
| B5.1.31 23 16.01.17 |  | Reinforced Concrete Columns | 3d | 2026-10-24 | 2026-10-26 | B5.1.31 23 16.01.11 |  |  |  | 18.32d | 0d | Labor [77.96 h]; Laboratory Officer [38.98 h]; Carpenter [38.98 h]; Steelfixer [38.98 h]; Mason [38.98 h]; Reinforced Concrete Columns for control room [1.6] | 2,317.92 |  | 0.0014566705181219 | Cons. | Z3 | Lift | Cons | LftSt | SUB.C | Lift.St |
| B5.1.31 23 16.01.23 |  | Concrete masonry unit (200mm) walls | 3d | 2026-10-27 | 2026-10-29 | B5.1.31 23 16.01.11, B5.1.31 23 16.01.17 |  |  |  | 18.32d | 0d | Labor [77.96 h]; Mason [38.98 h]; Concrete masonry unit, 200mm thick wall; for control room [34.12] | 3,834.41 |  | 0.00225996593948421 | Cons. | Z3 | Lift | Cons | LftSt | SUB.C | Lift.St |
| B5.1.31 23 16.01.27 |  | Roof Slab for wet well & Chambers | 4d | 2026-10-31 | 2026-11-03 | B5.1.31 23 16.01.13, B5.1.31 23 16.01.23 |  |  |  | 18.32d | 0d | Labor [77.96 h]; Laboratory Officer [38.98 h]; Carpenter [38.98 h]; Steelfixer [38.98 h]; Mason [38.98 h]; Roof Slab for wet well & valve chamber & screening chamber & control room [9.47] | 11,740.34 |  | 0.005609523839728 | Cons. | Z3 | Lift | Cons | LftSt | SUB.C | Lift.St |
|  | 12 | **Waterproofing, Roofing & External Enclosure** |  | 2026-10-31 | 2026-11-24 |  |  |  |  |  |  |  |  |  |  |  |  |  |  |  |  |  |
| B5.1.31 23 16.01.29 |  | External plastering | 4d | 2026-10-31 | 2026-11-03 | B5.1.31 23 16.01.23 |  |  |  | 33.32d | 15d | Labor [62.37 h]; Mason [31.18 h]; External plastering for control room [59.48] | 2,141.28 |  | 0.000814456491805571 | Cons. | Z3 | Lift | Cons | LftSt | SUB.C | Lift.St |
| B5.1.31 23 16.01.39 |  | Water proofing Membrane for roof | 3d | 2026-11-04 | 2026-11-07 | B5.1.31 23 16.01.27 |  |  |  | 18.32d | 0d | Labor [46.78 h]; Foreman [23.39 h]; Mason [23.39 h]; Water proofing Membrane for roof for control room [9.71] | 733.2 |  | 0.00037962722034715 | Cons. | Z3 | Lift | Cons | LftSt | SUB.C | Lift.St |
| B5.1.31 23 16.01.55 |  | Vapor retarders for roof | 3d | 2026-11-08 | 2026-11-10 | B5.1.31 23 16.01.39 |  |  |  | 18.32d | 0d | Labor [46.78 h]; Foreman [23.39 h]; Mason [23.39 h]; Vapor retarders for roof for control room [9] | 55.35 |  | 3.09191816333595E-005 | Cons. | Z3 | Lift | Cons | LftSt | SUB.C | Lift.St |
| B5.1.31 23 16.01.71 |  | Geotextile membrane | 3d | 2026-11-11 | 2026-11-14 | B5.1.31 23 16.01.55, DMM2-Proc-Delv-7439_R |  |  |  | 18.32d | 0d | Labor [93.55 h]; Foreman [46.78 h]; Mason [46.78 h]; Geotextile membrane for roof for control room [9] | 63.18 |  | 3.52931146449079E-005 | Cons. | Z3 | Lift | Cons | LftSt | SUB.C | Lift.St |
| B5.1.31 23 16.01.89 |  | Gravel for Control Room Roof | 3d | 2026-11-15 | 2026-11-17 | B5.1.31 23 16.01.71 |  |  |  | 18.32d | 0d | Labor [31.18 h]; Mason [15.59 h]; Gravel For control room Roof [8.51] | 149.44 |  | 8.82830617043563E-005 | Cons. | Z3 | Lift | Cons | LftSt | SUB.C | Lift.St |
| B5.1.31 23 16.01.99 |  | 50mm slab on grade | 3d | 2026-11-18 | 2026-11-21 | B5.1.31 23 16.01.89, B5.1.31 23 16.01.25 |  |  |  | 18.32d | 0d | Labor [31.18 h]; Laboratory Officer [15.59 h]; Steelfixer [15.59 h]; Mason [15.59 h]; 50mm slab on grade for roof layers for control room [9.71] | 281.3 |  | 0.000145646941775354 | Cons. | Z3 | Lift | Cons | LftSt | SUB.C | Lift.St |
| B5.1.31 23 16.01.107 |  | Stone copping 30mm thickness | 3d | 2026-11-22 | 2026-11-24 | B5.1.31 23 16.01.99 |  |  |  | 18.32d | 0d | Labor [46.78 h]; Carpenter [23.39 h]; Mason [23.39 h]; Stone copping 30mm thickness for control room [12.8] | 2,449.92 |  | 0.00115471831504879 | Cons. | Z3 | Lift | Cons | LftSt | SUB.C | Lift.St |
|  | 13 | **Internal Chamber Works (Wet Well, Valve, Screening)** |  | 2026-10-24 | 2026-11-18 |  |  |  |  |  |  |  |  |  |  |  |  |  |  |  |  |  |
| B5.1.31 23 16.01.31 |  | Sloped screed for internal floors for wet well and valve chamber | 2d | 2026-10-24 | 2026-10-25 | B5.1.31 23 16.01.13, B5.1.31 23 16.01.21 |  |  |  | 24.32d | 0d | Labor [31.18 h]; Mason [15.59 h]; Sloped screed for internal floors for wet well and valve chamber [11] | 318.67 |  | 0.000174776330130425 | Cons. | Z3 | Lift | Cons | LftSt | SUB.C | Lift.St |
| B5.1.31 23 16.01.41 |  | Sloped screed for internal floors for Screening chamber | 3d | 2026-10-26 | 2026-10-28 | B5.1.31 23 16.01.13, B5.1.31 23 16.01.21, B5.1.31 23 16.01.31 |  |  |  | 29.32d | 0d | Labor [31.18 h]; Mason [15.59 h]; Sloped screed for internal floors for Screening chamber [4] | 115.88 |  | 8.73881650652125E-005 | Cons. | Z3 | Lift | Cons | LftSt | SUB.C | Lift.St |
| B5.1.31 23 16.01.43 |  | Epoxy paint for internal side and floors for wet well and valve chamber | 2d | 2026-10-26 | 2026-10-27 | B5.1.31 23 16.01.31 |  |  |  | 24.32d | 1d | Labor [46.78 h]; Painter [23.39 h]; Epoxy paint for internal side for wet well and valve chamber [96.32] | 4,481.77 |  | 0.00257323003827684 | Cons. | Z3 | Lift | Cons | LftSt | SUB.C | Lift.St |
| B5.1.31 23 16.01.57 |  | Epoxy paint for internal side and floors for Screening chamber | 3d | 2026-10-29 | 2026-11-01 | B5.1.31 23 16.01.41, B5.1.31 23 16.01.43 |  |  |  | 29.32d | 0d | Labor [46.78 h]; Painter [23.39 h]; Epoxy paint for internal side for Screening chamber [59.12] | 2,750.85 |  | 0.00152054502261812 | Cons. | Z3 | Lift | Cons | LftSt | SUB.C | Lift.St |
| B5.1.31 23 16.01.73 |  | Stainless steel A36 ladders for screening chamber for screening chamber, wet well & valve chamber | 3d | 2026-11-02 | 2026-11-04 | B5.1.31 23 16.01.43, B5.1.31 23 16.01.57, DMM2-Proc-Delv-7432 |  |  |  | 31.32d | 0d | Labor [31.18 h]; Foreman [15.59 h]; Welder [15.59 h]; Welding Machine [16 h]; Stainless steel A36 ladder for screening chamber length of 6.8m [1]; Stainless steel A36 ladder for wet well length of 8.6m [1]; Stainless steel A36 ladder for valve chamber length of 1.8m [1] | 18,775.21 |  | 0.00943922897943716 | Cons. | Z3 | Lift | Cons | LftSt | SUB.C | Lift.St |
| B5.1.31 23 16.01.91 |  | Stainless steel A36 covers | 2d | 2026-11-05 | 2026-11-07 | B5.1.31 23 16.01.73, DMM2-Proc-Delv-7433 |  |  |  | 31.32d | 8d | Labor [31.18 h]; Foreman [15.59 h]; Stainless steel A36 cover at top of screening chamber & wet well size of 600x600mm [2]; Stainless steel A36 cover at top of screening chamber size of 700x1200mm [2]; Stainless steel A36 cover at top of wet well size of 2000x1000mm [1] | 15,389.62 |  | 0.00635638044271369 | Cons. | Z3 | Lift | Cons | LftSt | SUB.C | Lift.St |
| B5.1.31 23 16.01.101 |  | Medium duty lockable D.I. cover | 2d | 2026-11-17 | 2026-11-18 | B5.1.31 23 16.01.73, B5.1.31 23 16.01.91, DMM2-Proc-Delv-7433, B5.1.31 23 16.01.95 |  |  |  | 23.32d | 5d | Labor [31.18 h]; Foreman [15.59 h]; Medium duty lockable D.I. cover at top of valve chamber size of 600x600mm [1] | 1,506.65 |  | 0.000757469674925222 | Cons. | Z3 | Lift | Cons | LftSt | SUB.C | Lift.St |

| ID | WBS | Activity | Duration | Start | Finish | Predecessors | Total float | Free float | Resources | Cost | Weight % | DMM2 Weekly Progress | DMM2 Zones | Networks & Stations | DMM2 Phases | Networks Components | Subcontractors works | Yellow Sheet | JANCO | All Electrical Scope |
| --- | --- | --- | --- | --- | --- | --- | --- | --- | --- | --- | --- | --- | --- | --- | --- | --- | --- | --- | --- | --- |
|  | 3 | **Control Room Internal Finishes** |  | 2026-10-27 | 2026-11-26 |  |  |  |  |  |  |  |  |  |  |  |  |  |  |  |
| B5.1.31 23 16.01.19 |  | Vapor retarders below slab on grade | 2d | 2026-10-27 | 2026-10-28 | B5.1.31 23 16.01.11, B5.1.31 23 16.01.17 | 32.32d | 0d | Labor [31.18 h]; Mason [15.59 h]; Vapor retarders below slab on grade for control room [9] | 55.35 | 3.09191816333595E-005 | Cons. | Z3 | Lift | Cons | LftSt | SUB.C | Lift.St |  |  |
| B5.1.31 23 16.01.25 |  | Water proofing Paint below slab on grade | 3d | 2026-10-29 | 2026-11-01 | B5.1.31 23 16.01.19 | 32.32d | 14d | Labor [31.18 h]; Mason [15.59 h]; Water proofing Paint below slab on grade for control room [9] | 521.55 | 0.000291344158642794 | Cons. | Z3 | Lift | Cons | LftSt | SUB.C | Lift.St |  |  |
| B5.1.31 23 16.01.45 |  | Internal plastering | 3d | 2026-11-04 | 2026-11-07 | B5.1.31 23 16.01.23, B5.1.31 23 16.01.27, B5.1.31 23 16.01.43 | 18.32d | 0d | Labor [62.37 h]; Mason [31.18 h]; Internal plastering for control room walls and ceiling [37.51] | 1,251.33 | 0.000754729682406498 | Cons. | Z3 | Lift | Cons | LftSt | SUB.C | Lift.St |  |  |
| B5.1.31 23 16.01.59 |  | Internal painting (Acrylic) | 3d | 2026-11-08 | 2026-11-10 | B5.1.31 23 16.01.45, DMM2-Proc-Delv-7434 | 18.32d | 0d | Labor [62.37 h]; Painter [31.18 h]; Epoxy paint for internal floors including skirting for control room [9.71]; Internal painting (Acrylic) for control room walls & ceiling [37.51] | 1,670.51 | 0.000922190986638298 | Cons. | Z3 | Lift | Cons | LftSt | SUB.C | Lift.St |  |  |
| B5.1.31 23 16.01.61 |  | External painting | 3d | 2026-11-22 | 2026-11-24 | B5.1.31 23 16.01.29, B5.1.31 23 16.01.45, DMM2-Proc-Delv-7434, B5.1.31 23 16.01.107 SS | 18.32d | 0d | Labor [62.37 h]; Painter [31.18 h]; External painting for control room [61.88] | 2,173.23 | 0.000794547555339217 | Cons. | Z3 | Lift | Cons | LftSt | SUB.C | Lift.St |  |  |
| B5.1.31 23 16.01.75 |  | Steel Door SD1 | 2d | 2026-11-22 | 2026-11-23 | B5.1.31 23 16.01.59, B5.1.31 23 16.01.61 SS | 19.32d | 1d | Labor [31.18 h]; Welder [15.59 h]; Welding Machine [16 h]; Steel Door SD1 For control room size (2000x2300)mm [1] | 15,407.18 | 0.00774595382293658 | Cons. | Z3 | Lift | Cons | LftSt | SUB.C | Lift.St |  |  |
| B5.1.31 23 16.01.97 |  | Aluminum signage | 2d | 2026-11-25 | 2026-11-26 | B5.1.31 23 16.01.59, B5.1.31 23 16.01.61, B5.1.31 23 16.01.75, DMM2-Proc-Delv-7435, B5.1.31 23 16.01.101 | 18.32d | 0d | Labor [31.18 h]; Welder [15.59 h]; Welding Machine [16 h]; Aluminum signage For control room size (300x150)mm [1] | 405.64 | 0.000203935883540747 | Cons. | Z3 | Lift | Cons | LftSt | SUB.C | Lift.St |  |  |
|  | 4 | **Mechanical & Process Equipment Installation** |  | 2026-10-22 | 2026-11-29 |  |  |  |  |  |  |  |  |  |  |  |  |  |  |  |
| B5.1.31 23 16.01.33 |  | Buried ductile iron pipes installation | 3d | 2026-10-22 | 2026-10-25 | B5.1.31 23 16.01.21, DMM2-Proc-Delv-4458, DMM2-Proc-Delv-4588 | 32.32d | 0d | Labor [46.78 h]; Plumber Helper [23.39 h]; Plumber [23.39 h]; Operator [46.78 h]; Surveyor [23.39 h]; Surveyor Helper [23.39 h]; JCB [24 h]; Buried ductile iron pipes with Dia. 150 mm [25] | 13,806.5 | 0.00534474755349846 | Cons. | Z3 | Lift | Cons | LftSt | SUB.C | Lift.St | SLS |  |
| B5.1.31 23 16.01.49 |  | Double flanged ductile iron pipe installation | 2d | 2026-10-26 | 2026-10-27 | B5.1.31 23 16.01.21, B5.1.31 23 16.01.33, DMM2-Proc-Delv-4448_R | 32.32d | 9d | Labor [46.78 h]; Foreman [23.39 h]; Plumber Helper [23.39 h]; Plumber [23.39 h]; Operator [46.78 h]; JCB [24 h]; Double flanged ductile iron pipe with Dia. 150 mm [15] | 8,283.9 | 0.00320684853209911 | Cons. | Z3 | Lift | Cons | LftSt | SUB.C | Lift.St | SLS |  |
| B5.1.31 23 16.01.47 |  | JIB Crane installation | 3d | 2026-11-04 | 2026-11-07 | B5.1.31 23 16.01.27, DMM2-Proc-Delv-4518_R | 21.32d | 0d | Labor [46.78 h]; Foreman [23.39 h]; Welder [23.39 h]; Operator [46.78 h]; Mobile Crane [24 h]; Welding Machine [24 h]; Low Bed Truck [24 h]; MEP Specialist [23.39 h]; JIB Crane [1] | 98,511.6 | 0.0381356341644311 | Cons. | Z3 | Lift | Cons | LftSt | SUB.C | Lift.St | SLS |  |
| B5.1.31 23 16.01.63 |  | Submersible - wet installed pump installation | 3d | 2026-11-08 | 2026-11-10 | B5.1.31 23 16.01.43, B5.1.31 23 16.01.47, DMM2-Proc-Delv-4438, B5.1. 26 32 12 .05 | 21.32d | 0d | Labor [46.78 h]; Foreman [23.39 h]; Plumber Helper [23.39 h]; Plumber [23.39 h]; Operator [46.78 h]; Boom Truck [24 h]; MEP Specialist [23.39 h]; Submersibel, wet installed pump [2] | 331,462.56 | 0.128315192600321 | Cons. | Z3 | Lift | Cons | LftSt | SUB.C | Lift.St | SLS |  |
| B5.1.31 23 16.01.65 |  | Manually operated Gate Valve DN150 installation | 2d | 2026-11-08 | 2026-11-09 | B5.1.31 23 16.01.33, B5.1.31 23 16.01.49, B5.1.31 23 16.01.47 | 23.32d | 0d | Labor [31.18 h]; Foreman [15.59 h]; Plumber Helper [15.59 h]; Plumber [15.59 h]; Operator [31.18 h]; Boom Truck [16 h]; Manually operated Gate Valve DN150 [2] | 7,694.82 | 0.00386856778589231 | Cons. | Z3 | Lift | Cons | LftSt | SUB.C | Lift.St | SLS |  |
| B5.1.31 23 16.01.77 |  | Non-return Valve DN150 installation | 2d | 2026-11-10 | 2026-11-11 | B5.1.31 23 16.01.33, B5.1.31 23 16.01.49, B5.1.31 23 16.01.65, DMM2-Proc-Delv-4478_R, B5.1.31 23 16.01.65 FF | 23.32d | 2d | Labor [31.18 h]; Foreman [15.59 h]; Plumber Helper [15.59 h]; Plumber [15.59 h]; Operator [31.18 h]; Boom Truck [16 h]; Non return Valve DN150 [2] | 8,901.16 | 0.00344580111782842 | Cons. | Z3 | Lift | Cons | LftSt | SUB.C | Lift.St | SLS |  |
| B5.1.31 23 16.01.79 |  | Basket screens | 3d | 2026-11-11 | 2026-11-14 | B5.1.31 23 16.01.43, B5.1.31 23 16.01.57, B5.1.31 23 16.01.63, DMM2-Proc-Delv-4488 | 21.32d | 0d | Labor [46.78 h]; Foreman [23.39 h]; Plumber Helper [23.39 h]; Plumber [23.39 h]; Operator [46.78 h]; Boom Truck [24 h]; MEP Specialist [23.39 h]; Basket screens [1] | 194,241.7 | 0.0751944990303393 | Cons. | Z3 | Lift | Cons | LftSt | SUB.C | Lift.St | SLS |  |
| B5.1.31 23 16.01.93 |  | Odor Control Unit | 2d | 2026-11-15 | 2026-11-16 | B5.1.31 23 16.01.43, B5.1.31 23 16.01.57, B5.1.31 23 16.01.63, B5.1.31 23 16.01.79, DMM2-Proc-Delv-4498, B5.1.31 23 16.01.77 | 21.32d | 0d | Labor [46.78 h]; Foreman [23.39 h]; Plumber Helper [23.39 h]; Plumber [23.39 h]; Operator [46.78 h]; Boom Truck [24 h]; MEP Specialist [23.39 h]; Odor Control Unit [1] | 214,407.6 | 0.0830010861225851 | Cons. | Z3 | Lift | Cons | LftSt | SUB.C | Lift.St | SLS |  |
| B5.1.31 23 16.01.95 |  | Screening container | 2d | 2026-11-15 | 2026-11-16 | B5.1.31 23 16.01.79, DMM2-Proc-Delv-7446 | 23.32d | 0d | Labor [46.78 h]; Foreman [23.39 h]; Plumber Helper [23.39 h]; Plumber [23.39 h]; Operator [46.78 h]; Boom Truck [24 h]; MEP Specialist [23.39 h]; Supply, test and commissioning for screening container [1] | 18,543.41 | 0.00932269131598005 | Cons. | Z3 | Lift | Cons | LftSt | SUB.C | Lift.St | SLS |  |
| B5.1.31 23 16.01.103 |  | Surge Tank | 2d | 2026-11-17 | 2026-11-18 | B5.1.31 23 16.01.43, B5.1.31 23 16.01.57, B5.1.31 23 16.01.63, B5.1.31 23 16.01.93, DMM2-Proc-Delv-3778, DMM2-Proc-Delv-4508, DMM2-Proc-Delv-4588 | 21.32d | 0d | Labor [46.78 h]; Foreman [23.39 h]; Welder [23.39 h]; Operator [46.78 h]; Mobile Crane [24 h]; Welding Machine [24 h]; Low Bed Truck [24 h]; MEP Specialist [23.39 h]; Surge Tank [1] | 315,237.12 | 0.122034029326179 | Cons. | Z3 | Lift | Cons | LftSt | SUB.C | Lift.St | SLS |  |
| B5.1.31 23 16.01.109 |  | Electrically operated penstock installation | 2d | 2026-11-19 | 2026-11-21 | B5.1.31 23 16.01.43, B5.1.31 23 16.01.57, B5.1.31 23 16.01.63, B5.1.31 23 16.01.103, DMM2-Proc-Delv-7445 | 21.32d | 0d | Labor [46.78 h]; Foreman [23.39 h]; Plumber Helper [23.39 h]; Plumber [23.39 h]; Operator [46.78 h]; Boom Truck [24 h]; MEP Specialist [23.39 h]; Electrically operated penstock 200 * 200 mm, [1] | 63,453.22 | 0.0319010843468692 | Cons. | Z3 | Lift | Cons | LftSt | SUB.C | Lift.St | SLS | allElec |
| B5.1.31 23 16.01.111 |  | Scupper installation | 3d | 2026-11-22 | 2026-11-24 | B5.1.31 23 16.01.99, DMM2-Proc-Delv-7447, DMM2-Proc-Delv-3638 | 20.32d | 2d | Labor [46.78 h]; Foreman [23.39 h]; Plumber Helper [23.39 h]; Plumber [23.39 h]; Scupper with Dia. 110mm [1] | 1,564.6 | 0.000786604090789498 | Cons. | Z3 | Lift | Cons | LftSt | SUB.C | Lift.St | SLS |  |
| B5.1.31 23 16.01.115 |  | DX wall mounted Split/AC installation | 2d | 2026-11-22 | 2026-11-23 | B5.1.31 23 16.01.59, B5.1.31 23 16.01.109 | 21.32d | 3d | Labor [31.18 h]; Foreman [15.59 h]; Electrician [15.59 h]; MEP Specialist [15.59 h]; DX wall mounted Split/AC [2] | 6,721.98 | 0.00337947158003543 | Cons. | Z3 | Lift | Cons | LftSt | SUB.C | Lift.St | SLS |  |
| B5.1.31 23 16.01.119 |  | Fire extinguishers (CO2, Powder) placement | 2d | 2026-11-28 | 2026-11-29 | B5.1.31 23 16.01.59, B5.1.31 23 16.01.115, B5.1.31 23 16.01.85, B5.1.31 23 16.01.97, B5.1.31 23 16.01.111 | 18.32d | 0d | Labor [31.18 h]; MEP Specialist [15.59 h]; CO2 fire extinguishers [1]; Powder fire extinguishers [1] | 1,599.72 | 0.000804260703130371 | Cons. | Z3 | Lift | Cons | LftSt | SUB.C | Lift.St | SLS |  |
|  | 5 | **Electrical & Control Systems** |  | 2026-10-21 | 2026-12-15 |  |  |  |  |  |  |  |  |  |  |  |  |  |  |  |
| B5.1.31 23 16.01.5 |  | Grounding and lightning system | 3d | 2026-10-21 | 2026-10-24 | B5.1.31 23 16.01.1 | 36.32d | 0d | Labor [31.18 h]; Foreman [15.59 h]; Electrician [15.59 h]; Supply, install and test the following grounding and lightning system [1] | 15,605.61 | 0.0078457146881643 | Cons. | Z3 | Lift | Cons | LftSt | SUB.C | Lift.St | SLS | allElec |
| B5.1.31 23 16.01.35 |  | 4Cx 95mm2 Cable from SEC/Generator to ATS and MCC-SPS | 3d | 2026-10-25 | 2026-10-27 | B5.1.31 23 16.01.21, B5.1.31 23 16.01.5, B5.1.31 23 16.01.21 FF | 36.32d | 0d | Labor [46.78 h]; Foreman [23.39 h]; Electrician [23.39 h]; 4Cx 95mm2 Cu/XLPE//PVC from nearest power supply (SEC) and generator to the ATS and from ATS to MCC-SPS [25] | 7,616.75 | 0.0029485826189193 | Cons. | Z3 | Lift | Cons | LftSt | SUB.C | Lift.St | SLS | allElec |
| B5.1.31 23 16.01.51 |  | Standby Diesel Generator Set installation | 3d | 2026-10-28 | 2026-10-31 | B5.1.31 23 16.01.21, B5.1.31 23 16.01.5, B5.1.31 23 16.01.35, DMM2-Proc-Delv-4588, DMM2-Proc-Delv-4458, DMM2-Proc-Delv-7366, DMM2-Proc-Delv-4508 | 36.32d | 0d | Labor [46.78 h]; Operator [46.78 h]; Boom Truck [24 h]; Electrician [23.39 h]; MEP Specialist [23.39 h]; Standby Diesel Generator Set 100 KVA, 400/230KVA, 3P, 60Hz in Sound Attenuated Enclosure [1] | 206,990.26 | 0.0801296987457364 | Cons. | Z3 | Lift | Cons | LftSt | SUB.C | Lift.St | SLS | allElec |
| B5.1.31 23 16.01.67 |  | 2.084m3 capacity underground fuel tank installation | 2d | 2026-11-01 | 2026-11-02 | B5.1.31 23 16.01.1, B5.1.31 23 16.01.21, B5.1.31 23 16.01.51, DMM2-Proc-Delv-7454 | 36.32d | 0d | Labor [46.78 h]; Plumber Helper [23.39 h]; Plumber [23.39 h]; Operator [46.78 h]; Boom Truck [24 h]; MEP Specialist [23.39 h]; 2.084m3 capacity under ground fuel tank [1] | 20,861.33 | 0.0104880277304775 | Cons. | Z3 | Lift | Cons | LftSt | SUB.C | Lift.St | SLS | allElec |
| B5.1.31 23 16.01.83 |  | Manually operated fuel pump installation | 2d | 2026-11-03 | 2026-11-04 | B5.1.31 23 16.01.67, B5.1.31 23 16.01.21, B5.1.31 23 16.01.11, DMM2-Proc-Delv-4598_R | 36.32d | 18d | Labor [46.78 h]; Operator [46.78 h]; Boom Truck [24 h]; Electrician [23.39 h]; MEP Specialist [23.39 h]; Manually operated fuel pump [1] | 4,844.8 | 0.00187551029929303 | Cons. | Z3 | Lift | Cons | LftSt | SUB.C | Lift.St | SLS | allElec |
| B5.1. 26 32 12 .05 |  | Positive displacement rotary type pump installation | 3d | 2026-11-04 | 2026-11-07 | B5.1.31 23 16.01.13, B5.1.31 23 16.01.27, DMM2-Proc-Delv-4628_R | 21.32d | 0d | Labor [46.78 h]; Plumber Helper [23.39 h]; Plumber [23.39 h]; Operator [46.78 h]; Boom Truck [24 h]; MEP Specialist [23.39 h]; Positive displacement rotary type pump [2] | 12,864.46 | 0.00498006671582794 | Cons. | Z3 | Lift | Cons | LftSt | SUB.C | Lift.St | SLS | allElec |
| B5.1.31 23 16.01.81 |  | MCC - 160AT/250AF, 400V, 3PH, 60HZ | 2d | 2026-11-11 | 2026-11-12 | B5.1.31 23 16.01.59, DMM2-Proc-Delv-4558 | 18.32d | 0d | Labor [46.78 h]; Operator [46.78 h]; Boom Truck [24 h]; Electrician [23.39 h]; MEP Specialist [23.39 h]; MCC - 160AT/250AF, 400V, 3PH, 60HZ, [1] | 72,956.53 | 0.0282428012334216 | Cons. | Z3 | Lift | Cons | LftSt | SUB.C | Lift.St | SLS | allElec |
| B5.1. 26 32 12 .03 |  | ATS | 2d | 2026-11-14 | 2026-11-15 | B5.1.31 23 16.01.59, B5.1.31 23 16.01.81, DMM2-Proc-Delv-4608_R | 18.32d | 0d | Labor [46.78 h]; Operator [46.78 h]; Boom Truck [24 h]; Electrician [23.39 h]; MEP Specialist [23.39 h]; Automatic Transfer Switch ATS panel [1] | 41,954.35 | 0.0162412928346154 | Cons. | Z3 | Lift | Cons | LftSt | SUB.C | Lift.St | SLS | allElec |
| B5.1.31 23 16.01.105 |  | DB-SPS Panel | 2d | 2026-11-16 | 2026-11-17 | B5.1.31 23 16.01.59, B5.1. 26 32 12 .03 | 18.32d | 0d | Labor [31.18 h]; Electrician [15.59 h]; MEP Specialist [15.59 h]; DB-SPS Panel: 100 Ampere, 3P, IP66,60Hz incomer MCCB & 6 ways outgoing MCCB [1] | 4,809.69 | 0.00241807104907864 | Cons. | Z3 | Lift | Cons | LftSt | SUB.C | Lift.St | SLS | allElec |
| B5.1. 26 29 00 .02 |  | Local Control Panel, IP 65 | 2d | 2026-11-18 | 2026-11-19 | B5.1.31 23 16.01.105, DMM2-Proc-Delv-4568 | 18.32d | 0d | Labor [31.18 h]; Electrician [15.59 h]; MEP Specialist [15.59 h]; Local Control Panel, IP 65 [2] | 22,947.4 | 0.00888335639076884 | Cons. | Z3 | Lift | Cons | LftSt | SUB.C | Lift.St | SLS | allElec |
| B5.1.31 23 16.01.113 |  | ELP Panels | 2d | 2026-11-21 | 2026-11-22 | B5.1.31 23 16.01.59, B5.1.31 23 16.01.105, B5.1. 26 29 00 .02 | 18.32d | 0d | Labor [46.78 h]; Electrician [23.39 h]; MEP Specialist [23.39 h]; ELP Panel: phtocell , timer,40 Ampere, 3P, IP66,60Hz incomer MCCB & 5ways outgoing MCCB [1] | 10,163.76 | 0.00510982461695 | Cons. | Z3 | Lift | Cons | LftSt | SUB.C | Lift.St | SLS | allElec |
| B5.1.31 23 16.01.117 |  | Isolator/disconnect switches installation | 2d | 2026-11-23 | 2026-11-24 | B5.1.31 23 16.01.59, B5.1.31 23 16.01.113 | 18.32d | 0d | Labor [46.78 h]; Electrician [23.39 h]; MEP Specialist [23.39 h]; 60A, 3P, 60Hz Isolator/disconnect switches IP65 [2]; 20A, 1P, 60Hz Isolator/disconnect switches IP65 [2] | 3,104.61 | 0.00156084050892567 | Cons. | Z3 | Lift | Cons | LftSt | SUB.C | Lift.St | SLS | allElec |
| B5.1.31 23 16.01.137 |  | Surfaced Mounted Light | 1d | 2026-11-28 | 2026-11-28 | B5.1.31 23 16.01.59, B5.1.31 23 16.01.121, B5.1.31 23 16.01.123, B5.1.31 23 16.01.125, B5.1.31 23 16.01.127, B5.1.31 23 16.01.129, B5.1.31 23 16.01.131, B5.1.31 23 16.01.133, B5.1.31 23 16.01.135, DMM2-Proc-Delv-7458, B5.1.31 23 16.01.119 SS | 18.32d | 0d | Labor [31.18 h]; Operator [31.18 h]; Boom Truck [16 h]; Electrician [15.59 h]; MEP Specialist [15.59 h]; Surfaced Mounted Light [3] | 1,704.21 | 0.000856793146851833 | Cons. | Z3 | Lift | Cons | LftSt | SUB.C | Lift.St | SLS | allElec |
| B5.1.31 23 16.01.139 |  | 7-meter single arm light pole | 2d | 2026-11-29 | 2026-11-30 | B5.1.31 23 16.01.59, B5.1.31 23 16.01.121, B5.1.31 23 16.01.123, B5.1.31 23 16.01.125, B5.1.31 23 16.01.127, B5.1.31 23 16.01.129, B5.1.31 23 16.01.131, B5.1.31 23 16.01.133, B5.1.31 23 16.01.135, B5.1.31 23 16.01.137, DMM2-Proc-Delv-7457 | 18.32d | 0d | Labor [46.78 h]; Foreman [23.39 h]; Operator [46.78 h]; JCB [24 h]; Manlift [24 h]; Electrician [23.39 h]; 7 meter single arm [10] | 67,571.07 | 0.0339713321988548 | Cons. | Z3 | Lift | Cons | LftSt | SUB.C | Lift.St | SLS | allElec |
| B5.1.31 23 16.01.141 |  | Socket Outlets installation | 2d | 2026-12-01 | 2026-12-02 | B5.1.31 23 16.01.59, B5.1.31 23 16.01.121, B5.1.31 23 16.01.123, B5.1.31 23 16.01.125, B5.1.31 23 16.01.127, B5.1.31 23 16.01.129, B5.1.31 23 16.01.131, B5.1.31 23 16.01.133, B5.1.31 23 16.01.135, B5.1.31 23 16.01.139 | 18.32d | 0d | Labor [46.78 h]; Electrician [23.39 h]; MEP Specialist [23.39 h]; 13A DOUBLE SWITCH SOCKET OUTLET (WEATHER PROOF) [2]; 20A SWITCH SOCKET OUTLET (FOR SPLIT UNIT), (WEATHER PROOF) [2] | 1,657.68 | 0.000833400146503867 | Cons. | Z3 | Lift | Cons | LftSt | SUB.C | Lift.St | SLS | allElec |
| B5.1.31 23 16.01.143 |  | Fire Alarm System | 2d | 2026-12-03 | 2026-12-05 | B5.1.31 23 16.01.59, B5.1.31 23 16.01.121, B5.1.31 23 16.01.123, B5.1.31 23 16.01.125, B5.1.31 23 16.01.127, B5.1.31 23 16.01.129, B5.1.31 23 16.01.131, B5.1.31 23 16.01.133, B5.1.31 23 16.01.135, B5.1.31 23 16.01.141 | 18.32d | 0d | Labor [46.78 h]; Electrician [23.39 h]; MEP Specialist [23.39 h]; Supply and install addressable fire alarm system [1] | 89,418.38 | 0.0449550572547802 | Cons. | Z3 | Lift | Cons | LftSt | SUB.C | Lift.St | SLS | allElec |
| B5.1.31 23 16.01.145 |  | PLC system | 3d | 2026-12-06 | 2026-12-08 | B5.1.31 23 16.01.59, B5.1.31 23 16.01.121, B5.1.31 23 16.01.123, B5.1.31 23 16.01.125, B5.1.31 23 16.01.127, B5.1.31 23 16.01.129, B5.1.31 23 16.01.131, B5.1.31 23 16.01.133, B5.1.31 23 16.01.135, B5.1.31 23 16.01.63, B5.1.31 23 16.01.79, B5.1.31 23 16.01.93, B5.1.31 23 16.01.103, B5.1.31 23 16.01.109, B5.1.31 23 16.01.143, DMM2-Proc-Delv-4668_R | 18.32d | 0d | Labor [62.37 h]; Electrician [31.18 h]; MEP Specialist [31.18 h]; Supply, installation, testing and commissioning of PLC system [1] | 2,397,705.62 | 0.458070509201314 | Cons. | Z3 | Lift | Cons | LftSt | SUB.C | Lift.St | SLS | allElec |
| B5.1.31 23 16.01.147 |  | Process Control Wiring | 3d | 2026-12-09 | 2026-12-12 | B5.1.31 23 16.01.59, B5.1.31 23 16.01.121, B5.1.31 23 16.01.123, B5.1.31 23 16.01.125, B5.1.31 23 16.01.127, B5.1.31 23 16.01.129, B5.1.31 23 16.01.131, B5.1.31 23 16.01.133, B5.1.31 23 16.01.135, B5.1.31 23 16.01.63, B5.1.31 23 16.01.79, B5.1.31 23 16.01.93, B5.1.31 23 16.01.103, B5.1.31 23 16.01.109, B5.1.31 23 16.01.143, B5.1.31 23 16.01.145, B5.1.31 23 16.01.145 FF, DMM2-Proc-Delv-7460 | 18.32d | 0d | Labor [46.78 h]; Electrician [23.39 h]; MEP Specialist [23.39 h]; Supply, installation, testing and commissioning of all control, instrumentation [1] | 259,751.03 | 0.0791767591591584 | Cons. | Z3 | Lift | Cons | LftSt | SUB.C | Lift.St | SLS | allElec |
| B5.1.31 23 16.01.149 |  | Instrumentation for Process Systems | 3d | 2026-12-13 | 2026-12-15 | B5.1.31 23 16.01.59, B5.1.31 23 16.01.121, B5.1.31 23 16.01.123, B5.1.31 23 16.01.125, B5.1.31 23 16.01.127, B5.1.31 23 16.01.129, B5.1.31 23 16.01.131, B5.1.31 23 16.01.133, B5.1.31 23 16.01.135, B5.1.31 23 16.01.63, B5.1.31 23 16.01.79, B5.1.31 23 16.01.93, B5.1.31 23 16.01.103, B5.1.31 23 16.01.109, B5.1.31 23 16.01.143, B5.1.31 23 16.01.147, B5.1.31 23 16.01.147 FF, DMM2-Proc-Delv-7461 | 18.32d | 0d | Labor [46.78 h]; Electrician [23.39 h]; MEP Specialist [23.39 h]; Supply, installation, testing and commissioning of all field instruments [1] | 41,701.49 | 0.0128098975875418 | Cons. | Z3 | Lift | Cons | LftSt | SUB.C | Lift.St | SLS | allElec |

| ID | WBS | Activity | Duration | Start | Finish | Predecessors | Complete | Planned start | Planned finish | Total float | Free float | Resources | Cost | Actual cost | Weight % | DMM2 Weekly Progress | DMM2 Zones | Networks & Stations | DMM2 Phases | JANCO | Networks Components | All Electrical Scope | Subcontractors works | Yellow Sheet | Dmm2 Roads | UNASCO |
| --- | --- | --- | --- | --- | --- | --- | --- | --- | --- | --- | --- | --- | --- | --- | --- | --- | --- | --- | --- | --- | --- | --- | --- | --- | --- | --- |
|  | LV Cables | **LV Cables** |  | 2026-11-25 | 2026-11-26 |  |  |  |  |  |  |  |  |  |  |  |  |  |  |  |  |  |  |  |  |  |
| B5.1.31 23 16.01.121 |  | 4Cx 10mm2 Cu/XLPE/SWA/PVC from MCC-SPS to ELP | 1d | 2026-11-25 | 2026-11-25 | B5.1.31 23 16.01.63, B5.1.31 23 16.01.79, B5.1.31 23 16.01.93, B5.1.31 23 16.01.103, B5.1.31 23 16.01.109, B5.1.31 23 16.01.81, B5.1. 26 32 12 .03, B5.1.31 23 16.01.105, B5.1.31 23 16.01.113, B5.1.31 23 16.01.117, DMM2-Proc-Delv-4578_R |  |  |  | 18.32d | 0d | Labor [31.18 h]; Foreman [15.59 h]; Electrician [15.59 h]; 4Cx 10mm2 Cu/XLPE/SWA/PVC from MCC-SPS to ELP [10] | 878 |  | 0.000339889787561774 | Cons. | Z3 | Lift | Cons | SLS | LftSt | allElec | SUB.C | Lift.St |  |  |
| B5.1.31 23 16.01.123 |  | 4Cx 35mm2 + 1Cx16mm2 SUBMERGED RUBBER | 1d | 2026-11-25 | 2026-11-25 | B5.1.31 23 16.01.63, B5.1.31 23 16.01.79, B5.1.31 23 16.01.93, B5.1.31 23 16.01.103, B5.1.31 23 16.01.109, B5.1.31 23 16.01.81, B5.1. 26 32 12 .03, B5.1.31 23 16.01.105, B5.1.31 23 16.01.113, B5.1.31 23 16.01.117, B5.1.31 23 16.01.121 FF, DMM2-Proc-Delv-4578_R |  |  |  | 18.32d | 0d | Labor [31.18 h]; Foreman [15.59 h]; Electrician [15.59 h]; 4Cx 35mm2 + 1Cx16mm2 SUBMERGED RUBBER INSULATED FLEXIBLE CABLE from MCC to PUMP1& PUMP2. [60] | 9,903.6 |  | 0.00383386389532663 | Cons. | Z3 | Lift | Cons | SLS | LftSt | allElec | SUB.C | Lift.St |  |  |
| B5.1.31 23 16.01.125 |  | 4Cx 10mm2 + 1Cx10mm2 Cu/XLPE/PVC FROM MCC-SPS to DB-SPS | 1d | 2026-11-25 | 2026-11-25 | B5.1.31 23 16.01.63, B5.1.31 23 16.01.79, B5.1.31 23 16.01.93, B5.1.31 23 16.01.103, B5.1.31 23 16.01.109, B5.1.31 23 16.01.81, B5.1. 26 32 12 .03, B5.1.31 23 16.01.105, B5.1.31 23 16.01.113, B5.1.31 23 16.01.117, B5.1.31 23 16.01.123 FF, DMM2-Proc-Delv-4578_R |  |  |  | 18.32d | 0d | Labor [31.18 h]; Foreman [15.59 h]; Electrician [15.59 h]; 4Cx 10mm2 + 1Cx10mm2 Cu/XLPE/PVC FROM MCC-SPS to DB-SPS [10] | 895.6 |  | 0.000346703068041372 | Cons. | Z3 | Lift | Cons | SLS | LftSt | allElec | SUB.C | Lift.St |  |  |
| B5.1.31 23 16.01.127 |  | 4Cx 10mm2 + 1Cx10mm2 Cu/XLPE/PVC FROM MCC-SPS to Penstok | 1d | 2026-11-25 | 2026-11-25 | B5.1.31 23 16.01.63, B5.1.31 23 16.01.79, B5.1.31 23 16.01.93, B5.1.31 23 16.01.103, B5.1.31 23 16.01.109, B5.1.31 23 16.01.81, B5.1. 26 32 12 .03, B5.1.31 23 16.01.105, B5.1.31 23 16.01.113, B5.1.31 23 16.01.117, B5.1.31 23 16.01.125 FF, DMM2-Proc-Delv-4578_R |  |  |  | 18.32d | 0d | Labor [31.18 h]; Foreman [15.59 h]; Electrician [15.59 h]; 4Cx 10mm2 + 1Cx10mm2 Cu/XLPE/PVC FROM MCC-SPS to Penstok [25] | 2,239 |  | 0.000866757670103431 | Cons. | Z3 | Lift | Cons | SLS | LftSt | allElec | SUB.C | Lift.St |  |  |
| B5.1.31 23 16.01.129 |  | 4Cx 10mm2 + 1Cx10mm2 Cu/XLPE/PVC FROM MCC-SPS to Odor Control Unit | 1d | 2026-11-26 | 2026-11-26 | B5.1.31 23 16.01.63, B5.1.31 23 16.01.79, B5.1.31 23 16.01.93, B5.1.31 23 16.01.103, B5.1.31 23 16.01.109, B5.1.31 23 16.01.81, B5.1. 26 32 12 .03, B5.1.31 23 16.01.105, B5.1.31 23 16.01.113, B5.1.31 23 16.01.117, B5.1.31 23 16.01.127, DMM2-Proc-Delv-4578_R |  |  |  | 18.32d | 0d | Labor [31.18 h]; Foreman [15.59 h]; Electrician [15.59 h]; 4Cx 10mm2 + 1Cx10mm2 Cu/XLPE/PVC FROM MCC-SPS to Odor Control Unit [20] | 1,791.2 |  | 0.000693406136082744 | Cons. | Z3 | Lift | Cons | SLS | LftSt | allElec | SUB.C | Lift.St |  |  |
| B5.1.31 23 16.01.131 |  | 4Cx 6mm2 + 1Cx6mm2 Cu/XLPE/PVC FROM MCC-SPS to the mechanical bar screen | 1d | 2026-11-26 | 2026-11-26 | B5.1.31 23 16.01.63, B5.1.31 23 16.01.79, B5.1.31 23 16.01.93, B5.1.31 23 16.01.103, B5.1.31 23 16.01.109, B5.1.31 23 16.01.81, B5.1. 26 32 12 .03, B5.1.31 23 16.01.105, B5.1.31 23 16.01.113, B5.1.31 23 16.01.117, B5.1.31 23 16.01.129 FF, DMM2-Proc-Delv-4578_R |  |  |  | 18.32d | 0d | Labor [31.18 h]; Foreman [15.59 h]; Electrician [15.59 h]; 4Cx 6mm2 + 1Cx6mm2 Cu/XLPE/PVC FROM MCC-SPS to the mechanical bar screen [20] | 1,352.2 |  | 0.000523461242301855 | Cons. | Z3 | Lift | Cons | SLS | LftSt | allElec | SUB.C | Lift.St |  |  |
| B5.1.31 23 16.01.133 |  | 3Cx 6mm2 Cu/XLPE/PVC FROM MCC-SPS to the two fuel pumps. | 1d | 2026-11-26 | 2026-11-26 | B5.1.31 23 16.01.63, B5.1.31 23 16.01.79, B5.1.31 23 16.01.93, B5.1.31 23 16.01.103, B5.1.31 23 16.01.109, B5.1.31 23 16.01.81, B5.1. 26 32 12 .03, B5.1.31 23 16.01.105, B5.1.31 23 16.01.113, B5.1.31 23 16.01.117, B5.1.31 23 16.01.83, B5.1.31 23 16.01.131 FF, DMM2-Proc-Delv-4578_R |  |  |  | 18.32d | 0d | Labor [31.18 h]; Foreman [15.59 h]; Electrician [15.59 h]; 3Cx 6mm2 Cu/XLPE/PVC FROM MCC-SPS to the two fuel pumps. [30] | 1,817.4 |  | 0.000703548633160328 | Cons. | Z3 | Lift | Cons | SLS | LftSt | allElec | SUB.C | Lift.St |  |  |
| B5.1.31 23 16.01.135 |  | 4Cx 6mm2 + 1Cx6mm2 Cu/XLPE/PVC FROM MCC-SPS to the mechanical crane | 1d | 2026-11-26 | 2026-11-26 | B5.1.31 23 16.01.63, B5.1.31 23 16.01.79, B5.1.31 23 16.01.93, B5.1.31 23 16.01.103, B5.1.31 23 16.01.109, B5.1.31 23 16.01.81, B5.1. 26 32 12 .03, B5.1.31 23 16.01.105, B5.1.31 23 16.01.113, B5.1.31 23 16.01.117, B5.1.31 23 16.01.133 FF, DMM2-Proc-Delv-4578_R |  |  |  | 18.32d | 0d | Labor [31.18 h]; Foreman [15.59 h]; Electrician [15.59 h]; 4Cx 6mm2 + 1Cx6mm2 Cu/XLPE/PVC FROM MCC-SPS to the mechanical crane [20] | 1,352.2 |  | 0.000523461242301855 | Cons. | Z3 | Lift | Cons | SLS | LftSt | allElec | SUB.C | Lift.St |  |  |
|  | 6 | **External Works & Site Finishing** |  | 2026-10-22 | 2026-11-04 |  |  |  |  |  |  |  |  |  |  |  |  |  |  |  |  |  |  |  |  |  |
| B5.1.31 23 16.01.37 |  | Precast Concrete curbstone - Type K1 | 3d | 2026-10-22 | 2026-10-25 | B5.1.31 23 16.01.3, B5.1.31 23 16.01.21 |  |  |  | 37.32d | 0d | Labor [46.78 h]; Carpenter [23.39 h]; Mason [23.39 h]; Operator [46.78 h]; Surveyor [23.39 h]; Surveyor Helper [23.39 h]; JCB [24 h]; Precast Concrete Kerb, Type K1 [158.15] | 11,941.91 |  | 0.00702310357642234 | Cons. | Z3 | Lift | Cons |  | LftSt | allElec | SUB.C | Lift.St |  |  |
| B5.1.31 23 16.01.53 |  | Electrical Hand Hole (EHH-1) 600mm x 600mm x 800mm | 3d | 2026-10-26 | 2026-10-28 | B5.1.31 23 16.01.21, B5.1.31 23 16.01.3, B5.1.31 23 16.01.37, DMM2-Proc-Delv-7456 |  |  |  | 37.32d | 0d | Labor [46.78 h]; Foreman [23.39 h]; Operator [46.78 h]; Surveyor [23.39 h]; Surveyor Helper [23.39 h]; JCB [24 h]; Water Tanker [24 h]; Electrician [23.39 h]; (EHH-1) 600mm x 600mm x 800mm concrete with hot dip galvanized heavy duty steel cover [5] | 33,609.94 |  | 0.0236563362528124 | Cons. | Z3 | Lift | Cons | SLS | LftSt | allElec | SUB.C | Lift.St |  |  |
| B5.1.31 23 16.01.69 |  | Precast Concrete curbstone - Type K4 | 2d | 2026-10-29 | 2026-10-31 | B5.1.31 23 16.01.3, B5.1.31 23 16.01.21, B5.1.31 23 16.01.53, B5.1.31 23 16.01.53 FF |  |  |  | 37.32d | 0d | Labor [46.78 h]; Carpenter [23.39 h]; Mason [23.39 h]; Operator [46.78 h]; Surveyor [23.39 h]; Surveyor Helper [23.39 h]; JCB [24 h]; Precast Concrete Kerb, Type K4 [81.4] | 5,645.9 |  | 0.00278966430971034 | Cons. | Z3 | Lift | Cons |  | LftSt | allElec | SUB.C | Lift.St |  |  |
| B5.1.31 23 16.01.87 |  | Electrical Hand Hole (EHH-2) 400mm x 400mm x 600mm | 2d | 2026-11-01 | 2026-11-02 | B5.1.31 23 16.01.21, B5.1.31 23 16.01.3, B5.1.31 23 16.01.69, DMM2-Proc-Delv-7456 |  |  |  | 37.32d | 0d | Labor [46.78 h]; Foreman [23.39 h]; Operator [46.78 h]; Surveyor [23.39 h]; Surveyor Helper [23.39 h]; JCB [24 h]; Water Tanker [24 h]; Electrician [23.39 h]; (EHH-2) 400mm x 400mm x 600mm concrete with hot dip galvanized heavy duty steel cover [3] | 14,602.93 |  | 0.00734161639482876 | Cons. | Z3 | Lift | Cons | SLS | LftSt | allElec | SUB.C | Lift.St |  |  |
| B5.1.31 23 16.01.85 |  | Steel fence (ZATCA HCIS) including Steel gate size (7*2.7)m | 2d | 2026-11-03 | 2026-11-04 | B5.1.31 23 16.01.37, B5.1.31 23 16.01.69, B5.1.31 23 16.01.87 |  |  |  | 37.32d | 19d | Labor [77.96 h]; Welder [38.98 h]; Carpenter [38.98 h]; Steelfixer [38.98 h]; Operator [77.96 h]; Surveyor [38.98 h]; Surveyor Helper [38.98 h]; Boom Truck [40 h]; Welding Machine [40 h]; Steel fence for lifting pump station (ZATCA HCIS) [139.18]; Steel gate for lifting pump station size (7*2.7)m [1] | 65,407.89 |  | 0.0345841554063373 | Cons. | Z3 | Lift | Cons |  | LftSt | allElec | SUB.C | Lift.St |  |  |
|  | Zone 04 | **Zone 04** |  | 2025-11-17 | 2027-01-19 |  |  |  |  |  |  |  |  |  |  |  |  |  |  |  |  |  |  |  |  |  |
|  | Dewatering | **Earthworks & Site Grading** |  | 2025-11-17 | 2026-05-06 |  |  |  |  |  |  |  |  |  |  |  |  |  |  |  |  |  |  |  |  |  |
| B1.1.31 23 19.12 |  | Dewatering | 135.38d | 2025-11-17 A | 2026-05-06 A | B1.1.31 23 19.2, DMM2-Cons-Surv-Z04 | 100% |  |  |  |  | Surface Dewatering [0.15]; Labor [269.32 h]; Foreman [134.66 h]; Surveyor [134.66 h]; Surveyor Helper [134.66 h]; Dewatering pump [152 h] | 434,610 | 434,610 | 0.218500017760746 | Earth | Z4 |  | Cons |  |  |  |  |  | Z4 |  |
| B1.1.31 23 16.12 |  | Excavation (all types of soil) | 41.64d | 2025-11-22 A | 2026-01-08 A | B1.1.31 23 19.12 | 100% |  |  |  |  | Excavation (all types of soil) [58850.9]; Labor [42.52 h]; Foreman [21.26 h]; Operator [42.52 h]; Surveyor [21.26 h]; Surveyor Helper [21.26 h]; Excavator (With Bucket) [24 h]; Water Tanker [24 h]; Dump Truck [24 h]; Plate Compactor [24 h] | 878,408.58 | 878,408.58 | 0.435546012215413 | Earth | Z4 |  | Cons |  |  |  |  |  | Z4 |  |
| B1.1.31 23 23.12 |  | Engineering Backfiling - Road 02 | 63.49d | 2025-11-22 A | 2026-02-04 A | B1.1.31 23 16.12, DMM2-Proc-Delv-7497 | 100% |  |  |  |  | Fill [69368.6]; Labor [269.32 h]; Foreman [134.66 h]; Operator [269.32 h]; Surveyor [134.66 h]; Surveyor Helper [134.66 h]; Loader [152 h]; Water Tanker [152 h]; Dump Truck [152 h]; Plate Compactor [152 h]; Roller Compactor [152 h] | 1,948,979.99 | 1,948,979.99 | 1.92879896636877 | Earth | Z4 |  | Cons |  |  |  |  |  | Rd 02 |  |
| B1.1.31 23 23.172 |  | Engineering Backfiling - Road 03 | 58.71d | 2025-11-27 A | 2026-02-04 A | B1.1.31 23 23.12, DMM2-Proc-Delv-7497 | 100% |  |  |  |  | Fill [23122.9]; Labor [269.32 h]; Foreman [134.66 h]; Operator [269.32 h]; Surveyor [134.66 h]; Surveyor Helper [134.66 h]; Loader [152 h]; Water Tanker [152 h]; Dump Truck [152 h]; Plate Compactor [152 h]; Roller Compactor [152 h] | 649,660.51 | 649,660.51 | 0.642932988789588 | Earth | Z4 |  | Cons |  |  |  |  |  | Rd 03 |  |
| B1.1.31 23 23.182 |  | Engineering Backfiling - Road 04 | 56.71d | 2025-11-30 A | 2026-02-04 A | B1.1.31 23 23.172, DMM2-Proc-Delv-7497 | 100% |  |  |  |  | Fill [23122.9]; Labor [269.32 h]; Foreman [134.66 h]; Operator [269.32 h]; Surveyor [134.66 h]; Surveyor Helper [134.66 h]; Loader [152 h]; Water Tanker [152 h]; Dump Truck [152 h]; Plate Compactor [152 h]; Roller Compactor [152 h] | 649,660.51 | 649,660.51 | 0.642932988789588 | Earth | Z4 |  | Cons |  |  |  |  |  | Rd 04 |  |
|  | Road 02 | **Road 02** |  | 2025-11-20 | 2027-01-13 |  |  |  |  |  |  |  |  |  |  |  |  |  |  |  |  |  |  |  |  |  |
|  | Wet Networks | **Wet Networks** |  | 2026-01-07 | 2026-12-17 |  |  |  |  |  |  |  |  |  |  |  |  |  |  |  |  |  |  |  |  |  |
|  | Sewerage Network | **Sewerage Network** |  | 2026-01-21 | 2026-10-22 |  |  |  |  |  |  |  |  |  |  |  |  |  |  |  |  |  |  |  |  |  |
|  | GRP | **GRP Pipes** |  | 2026-01-21 | 2026-06-08 |  |  |  |  |  |  |  |  |  |  |  |  |  |  |  |  |  |  |  |  |  |
|  | 150 | **?150** |  | 2026-01-24 | 2026-06-06 |  |  |  |  |  |  |  |  |  |  |  |  |  |  |  |  |  |  |  |  |  |
|  | 1 | **Depth From 1.5m to 2.5m** |  | 2026-01-24 | 2026-05-23 |  |  |  |  |  |  |  |  |  |  |  |  |  |  |  |  |  |  |  |  |  |
| B5.33 31 00.01.02.1 |  | Excavation | 32.08d | 2026-01-24 A | 2026-03-08 A | B1.1.31 23 23.12 | 100% |  |  |  |  | Labor [28.35 h]; Foreman [14.17 h]; Operator [28.35 h]; Surveyor [14.17 h]; Surveyor Helper [14.17 h]; Excavator (With Bucket) [16 h]; Water Tanker [16 h]; Dump Truck [16 h]; Plate Compactor [16 h]; Sew Dia. 150mm Depth: 1.51m - 2.5m [15.67] | 4,500.25 | 4,500.25 | 0.00104261322598816 | Cons. | Z4 | Sew | Cons |  | GRPs |  | SUB.C | Sew | Rd 02 | CS.UNSC |
| B5.33 31 00.01.02.13 |  | Sand Bedding | 33.58d | 2026-01-27 A | 2026-03-15 A | B5.33 31 00.01.02.1 | 100% |  |  |  |  | Labor [28.35 h]; Foreman [14.17 h]; Operator [56.7 h]; Surveyor [14.17 h]; Surveyor Helper [14.17 h]; Loader [16 h]; Water Tanker [16 h]; Dump Truck [16 h]; Plate Compactor [16 h]; Sew Dia. 150mm Depth: 1.51m - 2.5m [3.92] | 1,124.18 | 1,124.18 | 0.000260448551346613 | Cons. | Z4 | Sew | Cons |  | GRPs |  | SUB.C | Sew | Rd 02 | CS.UNSC |
| B5.33 31 00.01.02.25 |  | Pipe Laying | 36.34d | 2026-01-28 A | 2026-03-22 A | B5.33 31 00.01.02.13 | 100% | 2026-01-28 | 2026-03-24 |  |  | Labor [28.35 h]; Foreman [14.17 h]; Plumber Helper [14.17 h]; Plumber [14.17 h]; Operator [14.17 h]; Surveyor [14.17 h]; Surveyor Helper [14.17 h]; Mobile Crane [16 h]; Sew Dia. 150mm Depth: 1.51m - 2.5m [35.26] | 10,124.68 | 10,124.68 | 0.00234567500332294 | Cons. | Z4 | Sew | Cons |  | GRPs |  | SUB.C | Sew | Rd 02 | CS.UNSC |
| B5.33 31 00.01.02.37 |  | Embedment & Test | 37.82d | 2026-01-31 A | 2026-03-29 A | B5.33 31 00.01.02.25 | 100% |  |  |  |  | Labor [56.7 h]; Foreman [28.35 h]; Plumber Helper [28.35 h]; Plumber [28.35 h]; Operator [56.7 h]; Surveyor [28.35 h]; Surveyor Helper [28.35 h]; Loader [32 h]; Water Tanker [32 h]; Dump Truck [32 h]; Plate Compactor [32 h]; Roller Compactor [32 h]; Sew Dia. 150mm Depth: 1.51m - 2.5m [15.67] | 4,500.25 | 4,500.25 | 0.00104261322598816 | Cons. | Z4 | Sew | Cons |  | GRPs |  | SUB.C | Sew | Rd 02 | CS.UNSC |
| B5.33 31 00.01.02.49 |  | Backfilling & Warrning Tape | 41.78d | 2026-04-04 A | 2026-05-23 A | B5.33 31 00.01.02.37 | 100% |  |  |  |  | Labor [70.87 h]; Foreman [35.44 h]; Operator [141.75 h]; Surveyor [35.44 h]; Surveyor Helper [35.44 h]; Loader [40 h]; Water Tanker [40 h]; Dump Truck [40 h]; Plate Compactor [40 h]; Roller Compactor [40 h]; Sew Dia. 150mm Depth: 1.51m - 2.5m [7.84] | 2,251.89 | 2,251.89 | 0.000521716123294941 | Cons. | Z4 | Sew | Cons |  | GRPs |  | SUB.C | Sew | Rd 02 | CS.UNSC |

| ID | WBS | Activity | Duration | Start | Finish | Predecessors | Complete | Planned start | Planned finish | Resources | Cost | Actual cost | Weight % | DMM2 Weekly Progress | DMM2 Zones | Networks & Stations | DMM2 Phases | UNASCO | Networks Components | Subcontractors works | Dmm2 Roads | Yellow Sheet |
| --- | --- | --- | --- | --- | --- | --- | --- | --- | --- | --- | --- | --- | --- | --- | --- | --- | --- | --- | --- | --- | --- | --- |
|  | 2 | **Depth From 2.5m to 3.5m** |  | 2026-01-26 | 2026-06-06 |  |  |  |  |  |  |  |  |  |  |  |  |  |  |  |  |  |
| B5.33 31 00.01.02.3 |  | Excavation | 46.58d | 2026-01-26 A | 2026-04-04 A | B5.33 31 00.01.02.1 | 100% |  |  | Labor [28.35 h]; Foreman [14.17 h]; Operator [28.35 h]; Surveyor [14.17 h]; Surveyor Helper [14.17 h]; Excavator (With Bucket) [16 h]; Water Tanker [16 h]; Dump Truck [16 h]; Plate Compactor [16 h]; Sew Dia. 150mm Depth: 2.51m - 3.5m [2.82] | 977.13 | 977.13 | 0.000221608358516241 | Cons. | Z4 | Sew | Cons | CS.UNSC | GRPs | SUB.C | Rd 02 | Sew |
| B5.33 31 00.01.02.15 |  | Sand Bedding | 46.58d | 2026-01-28 A | 2026-04-06 A | B5.33 31 00.01.02.3 | 100% |  |  | Labor [28.35 h]; Foreman [14.17 h]; Operator [56.7 h]; Surveyor [14.17 h]; Surveyor Helper [14.17 h]; Loader [16 h]; Water Tanker [16 h]; Dump Truck [16 h]; Plate Compactor [16 h]; Sew Dia. 150mm Depth: 2.51m - 3.5m [0.7] | 244.28 | 244.28 | 5.54020896290601E-005 | Cons. | Z4 | Sew | Cons | CS.UNSC | GRPs | SUB.C | Rd 02 | Sew |
| B5.33 31 00.01.02.27 |  | Pipe Laying | 47.58d | 2026-01-31 A | 2026-04-09 A | B5.33 31 00.01.02.15 | 100% |  |  | Labor [28.35 h]; Foreman [14.17 h]; Plumber Helper [14.17 h]; Plumber [14.17 h]; Operator [14.17 h]; Surveyor [14.17 h]; Surveyor Helper [14.17 h]; Mobile Crane [16 h]; Sew Dia. 150mm Depth: 2.51m - 3.5m [6.35] | 2,202.91 | 2,202.91 | 0.000499608129690632 | Cons. | Z4 | Sew | Cons | CS.UNSC | GRPs | SUB.C | Rd 02 | Sew |
| B5.33 31 00.01.02.39 |  | Embedment & Test | 53.82d | 2026-02-01 A | 2026-04-18 A | B5.33 31 00.01.02.27 | 100% |  |  | Labor [56.7 h]; Foreman [28.35 h]; Plumber Helper [28.35 h]; Plumber [28.35 h]; Operator [56.7 h]; Surveyor [28.35 h]; Surveyor Helper [28.35 h]; Loader [32 h]; Water Tanker [32 h]; Dump Truck [32 h]; Plate Compactor [32 h]; Roller Compactor [32 h]; Sew Dia. 150mm Depth: 2.51m - 3.5m [2.82] | 977.13 | 977.13 | 0.000221608358516241 | Cons. | Z4 | Sew | Cons | CS.UNSC | GRPs | SUB.C | Rd 02 | Sew |
| B5.33 31 00.01.02.51 |  | Backfilling & Warrning Tape | 20d | 2026-05-09 A | 2026-06-06 A | B5.33 31 00.01.02.39, B5.33 31 00.01.02.49 | 100% |  |  | Labor [70.87 h]; Foreman [35.44 h]; Operator [141.75 h]; Surveyor [35.44 h]; Surveyor Helper [35.44 h]; Loader [40 h]; Water Tanker [40 h]; Dump Truck [40 h]; Plate Compactor [40 h]; Roller Compactor [40 h]; Sew Dia. 150mm Depth: 2.51m - 3.5m [1.41] | 488.57 | 488.57 | 0.00011080417925812 | Cons. | Z4 | Sew | Cons | CS.UNSC | GRPs | SUB.C | Rd 02 | Sew |
|  | 200 | **?200** |  | 2026-01-21 | 2026-06-08 |  |  |  |  |  |  |  |  |  |  |  |  |  |  |  |  |  |
|  | 3 | **Depth From 1.5m to 2.5m** |  | 2026-02-26 | 2026-06-03 |  |  |  |  |  |  |  |  |  |  |  |  |  |  |  |  |  |
| B5.33 31 00.01.02.5 |  | Excavation | 5.17d | 2026-02-26 A | 2026-03-07 A | B5.33 31 00.01.02.3 | 100% |  |  | Labor [42.52 h]; Foreman [21.26 h]; Operator [42.52 h]; Surveyor [21.26 h]; Surveyor Helper [21.26 h]; Excavator (With Bucket) [24 h]; Water Tanker [24 h]; Dump Truck [24 h]; Plate Compactor [24 h]; Sew Dia. 200mm Depth: 1.51m - 2.5m [90.91] | 30,729.97 | 30,729.97 | 0.00549155681141213 | Cons. | Z4 | Sew | Cons | CS.UNSC | GRPs | SUB.C | Rd 02 | Sew |
| B5.33 31 00.01.02.17 |  | Sand Bedding | 7.42d | 2026-03-02 A | 2026-03-14 A | B5.33 31 00.01.02.5 | 100% |  |  | Labor [42.52 h]; Foreman [21.26 h]; Operator [85.05 h]; Surveyor [21.26 h]; Surveyor Helper [21.26 h]; Loader [24 h]; Water Tanker [24 h]; Dump Truck [24 h]; Plate Compactor [24 h]; Sew Dia. 200mm Depth: 1.51m - 2.5m [22.73] | 7,683.84 | 7,683.84 | 0.00137313027207214 | Cons. | Z4 | Sew | Cons | CS.UNSC | GRPs | SUB.C | Rd 02 | Sew |
| B5.33 31 00.01.02.29 |  | Pipe Laying | 11.37d | 2026-03-03 A | 2026-03-21 A | B5.33 31 00.01.02.17 | 100% | 2026-03-03 | 2026-03-24 | Labor [28.35 h]; Foreman [14.17 h]; Plumber Helper [14.17 h]; Plumber [14.17 h]; Operator [14.17 h]; Surveyor [14.17 h]; Surveyor Helper [14.17 h]; Mobile Crane [16 h]; Sew Dia. 200mm Depth: 1.51m - 2.5m [204.55] | 69,143.79 | 69,143.79 | 0.0123562438948964 | Cons. | Z4 | Sew | Cons | CS.UNSC | GRPs | SUB.C | Rd 02 | Sew |
| B5.33 31 00.01.02.41 |  | Embedment & Test | 42.1d | 2026-04-01 A | 2026-05-20 A | B5.33 31 00.01.02.29 | 100% |  |  | Labor [56.7 h]; Foreman [28.35 h]; Plumber Helper [28.35 h]; Plumber [28.35 h]; Operator [56.7 h]; Surveyor [28.35 h]; Surveyor Helper [28.35 h]; Loader [32 h]; Water Tanker [32 h]; Dump Truck [32 h]; Plate Compactor [32 h]; Roller Compactor [32 h]; Sew Dia. 200mm Depth: 1.51m - 2.5m [90.91] | 30,729.97 | 30,729.97 | 0.00549155681141213 | Cons. | Z4 | Sew | Cons | CS.UNSC | GRPs | SUB.C | Rd 02 | Sew |
| B5.33 31 00.01.02.53 |  | Backfilling & Warrning Tape | 46.29d | 2026-04-06 A | 2026-06-03 A | B5.33 31 00.01.02.41 | 100% |  |  | Labor [70.87 h]; Foreman [35.44 h]; Operator [141.75 h]; Surveyor [35.44 h]; Surveyor Helper [35.44 h]; Loader [40 h]; Water Tanker [40 h]; Dump Truck [40 h]; Plate Compactor [40 h]; Roller Compactor [40 h]; Sew Dia. 200mm Depth: 1.51m - 2.5m [45.46] | 15,367.68 | 15,367.68 | 0.0027462605441443 | Cons. | Z4 | Sew | Cons | CS.UNSC | GRPs | SUB.C | Rd 02 | Sew |
|  | 2 | **Depth From 2.5m to 3.5m** |  | 2026-01-21 | 2026-06-08 |  |  |  |  |  |  |  |  |  |  |  |  |  |  |  |  |  |
| B5.33 31 00.01.02.7 |  | Excavation | 90.58d | 2026-01-21 A | 2026-05-20 A | B5.33 31 00.01.02.5 | 100% |  |  | Labor [42.52 h]; Foreman [21.26 h]; Operator [42.52 h]; Surveyor [21.26 h]; Surveyor Helper [21.26 h]; Excavator (With Bucket) [24 h]; Water Tanker [24 h]; Dump Truck [24 h]; Plate Compactor [24 h]; Sew Dia. 200mm Depth: 2.51m - 3.5m [62.03] | 24,727.59 | 24,727.59 | 0.00646094324563673 | Cons. | Z4 | Sew | Cons | CS.UNSC | GRPs | SUB.C | Rd 02 | Sew |
| B5.33 31 00.01.02.19 |  | Sand Bedding | 88.58d | 2026-01-24 A | 2026-05-20 A | B5.33 31 00.01.02.7 | 100% |  |  | Labor [42.52 h]; Foreman [21.26 h]; Operator [85.05 h]; Surveyor [21.26 h]; Surveyor Helper [21.26 h]; Loader [24 h]; Water Tanker [24 h]; Dump Truck [24 h]; Plate Compactor [24 h]; Sew Dia. 200mm Depth: 2.51m - 3.5m [15.5] | 6,179.72 | 6,179.72 | 0.001614667266597 | Cons. | Z4 | Sew | Cons | CS.UNSC | GRPs | SUB.C | Rd 02 | Sew |
| B5.33 31 00.01.02.31 |  | Pipe Laying | 86.5d | 2026-01-26 A | 2026-05-20 A | B5.33 31 00.01.02.19 | 100% |  |  | Labor [28.35 h]; Foreman [14.17 h]; Plumber Helper [14.17 h]; Plumber [14.17 h]; Operator [14.17 h]; Surveyor [14.17 h]; Surveyor Helper [14.17 h]; Mobile Crane [16 h]; Sew Dia. 200mm Depth: 2.51m - 3.5m [139.57] | 55,634.89 | 55,634.89 | 0.0145365537578704 | Cons. | Z4 | Sew | Cons | CS.UNSC | GRPs | SUB.C | Rd 02 | Sew |
| B5.33 31 00.01.02.43 |  | Embedment & Test | 92.65d | 2026-01-28 A | 2026-06-03 A | B5.33 31 00.01.02.31 | 100% |  |  | Labor [56.7 h]; Foreman [28.35 h]; Plumber Helper [28.35 h]; Plumber [28.35 h]; Operator [56.7 h]; Surveyor [28.35 h]; Surveyor Helper [28.35 h]; Loader [32 h]; Water Tanker [32 h]; Dump Truck [32 h]; Plate Compactor [32 h]; Roller Compactor [32 h]; Sew Dia. 200mm Depth: 2.51m - 3.5m [62.03] | 24,727.59 | 24,727.59 | 0.00646094324563673 | Cons. | Z4 | Sew | Cons | CS.UNSC | GRPs | SUB.C | Rd 02 | Sew |
| B5.33 31 00.01.02.55 |  | Backfilling & Warrning Tape | 22.89d | 2026-05-07 A | 2026-06-08 A | B5.33 31 00.01.02.43, B5.33 31 00.01.02.53, B5.33 31 00.01.02.51 | 100% |  |  | Labor [70.87 h]; Foreman [35.44 h]; Operator [141.75 h]; Surveyor [35.44 h]; Surveyor Helper [35.44 h]; Loader [40 h]; Water Tanker [40 h]; Dump Truck [40 h]; Plate Compactor [40 h]; Roller Compactor [40 h]; Sew Dia. 200mm Depth: 2.51m - 3.5m [31.02] | 12,363.79 | 12,363.79 | 0.00323047162281836 | Cons. | Z4 | Sew | Cons | CS.UNSC | GRPs | SUB.C | Rd 02 | Sew |
|  | 1 | **Depth From 3.5m to 4.5m** |  | 2026-03-05 | 2026-05-20 |  |  |  |  |  |  |  |  |  |  |  |  |  |  |  |  |  |
| B5.33 31 00.01.02.9 |  | Excavation | 58.01d | 2026-03-05 A | 2026-05-20 A | B5.33 31 00.01.02.7 | 100% |  |  | Labor [42.52 h]; Foreman [21.26 h]; Operator [42.52 h]; Surveyor [21.26 h]; Surveyor Helper [21.26 h]; Excavator (With Bucket) [24 h]; Water Tanker [24 h]; Dump Truck [24 h]; Plate Compactor [24 h]; Sew Dia. 200mm Depth: 3.51m - 4.5m [83.61] | 38,392.5 | 38,392.5 | 0.00797337574002583 | Cons. | Z4 | Sew | Cons | CS.UNSC | GRPs | SUB.C | Rd 02 | Sew |
| B5.33 31 00.01.02.21 |  | Sand Bedding | 56.51d | 2026-03-08 A | 2026-05-20 A | B5.33 31 00.01.02.9 | 100% |  |  | Labor [42.52 h]; Foreman [21.26 h]; Operator [85.05 h]; Surveyor [21.26 h]; Surveyor Helper [21.26 h]; Loader [24 h]; Water Tanker [24 h]; Dump Truck [24 h]; Plate Compactor [24 h]; Sew Dia. 200mm Depth: 3.51m - 4.5m [20.91] | 9,599.7 | 9,599.7 | 0.00199367141059952 | Cons. | Z4 | Sew | Cons | CS.UNSC | GRPs | SUB.C | Rd 02 | Sew |
| B5.33 31 00.01.02.33 |  | Pipe Laying | 55.76d | 2026-03-09 A | 2026-05-20 A | B5.33 31 00.01.02.21 | 100% |  |  | Labor [42.52 h]; Foreman [21.26 h]; Plumber Helper [21.26 h]; Plumber [21.26 h]; Operator [21.26 h]; Surveyor [21.26 h]; Surveyor Helper [21.26 h]; Mobile Crane [24 h]; Sew Dia. 200mm Depth: 3.51m - 4.5m [188.12] | 86,384.7 | 86,384.7 | 0.0179404228906512 | Cons. | Z4 | Sew | Cons | CS.UNSC | GRPs | SUB.C | Rd 02 | Sew |
| B5.33 31 00.01.02.45 |  | Embedment & Test | 16.56d | 2026-04-30 A | 2026-05-20 A | B5.33 31 00.01.02.33 | 100% |  |  | Labor [56.7 h]; Foreman [28.35 h]; Plumber Helper [28.35 h]; Plumber [28.35 h]; Operator [56.7 h]; Surveyor [28.35 h]; Surveyor Helper [28.35 h]; Loader [32 h]; Water Tanker [32 h]; Dump Truck [32 h]; Plate Compactor [32 h]; Roller Compactor [32 h]; Sew Dia. 200mm Depth: 3.51m - 4.5m [83.61] | 38,392.5 | 38,392.5 | 0.00797337574002583 | Cons. | Z4 | Sew | Cons | CS.UNSC | GRPs | SUB.C | Rd 02 | Sew |
| B5.33 31 00.01.02.57 |  | Backfilling & Warrning Tape | 14.64d | 2026-05-03 A | 2026-05-20 A | B5.33 31 00.01.02.45 | 100% |  |  | Labor [70.87 h]; Foreman [35.44 h]; Operator [141.75 h]; Surveyor [35.44 h]; Surveyor Helper [35.44 h]; Loader [40 h]; Water Tanker [40 h]; Dump Truck [40 h]; Plate Compactor [40 h]; Roller Compactor [40 h]; Sew Dia. 200mm Depth: 3.51m - 4.5m [41.8] | 19,193.1 | 19,193.1 | 0.00398603291882676 | Cons. | Z4 | Sew | Cons | CS.UNSC | GRPs | SUB.C | Rd 02 | Sew |

| ID | WBS | Activity | Duration | Start | Finish | Predecessors | Complete | Remaining | Planned start | Planned finish | Total float | Resources | Cost | Actual cost | Weight % | DMM2 Weekly Progress | DMM2 Zones | Networks & Stations | DMM2 Phases | UNASCO | Networks Components | Subcontractors works | Dmm2 Roads | Yellow Sheet |
| --- | --- | --- | --- | --- | --- | --- | --- | --- | --- | --- | --- | --- | --- | --- | --- | --- | --- | --- | --- | --- | --- | --- | --- | --- |
|  | 4 | **Depth From 4.5m to 5.5m** |  | 2026-03-05 | 2026-06-06 |  |  |  |  |  |  |  |  |  |  |  |  |  |  |  |  |  |  |  |
| B5.33 31 00.01.02.11 |  | Excavation | 58.01d | 2026-03-05 A | 2026-05-20 A | B5.33 31 00.01.02.9 | 100% |  |  |  |  | Labor [42.52 h]; Foreman [21.26 h]; Operator [42.52 h]; Surveyor [21.26 h]; Surveyor Helper [21.26 h]; Excavator (With Bucket) [24 h]; Water Tanker [24 h]; Dump Truck [24 h]; Plate Compactor [24 h]; Sew Dia. 200mm Depth: 4.51m -5.5m [27.78] | 14,415.02 | 14,415.02 | 0.00414613354616581 | Cons. | Z4 | Sew | Cons | CS.UNSC | GRPs | SUB.C | Rd 02 | Sew |
| B5.33 31 00.01.02.23 |  | Sand Bedding | 53.43d | 2026-03-08 A | 2026-05-17 A | B5.33 31 00.01.02.11 | 100% |  |  |  |  | Labor [28.35 h]; Foreman [14.17 h]; Operator [56.7 h]; Surveyor [14.17 h]; Surveyor Helper [14.17 h]; Loader [16 h]; Water Tanker [16 h]; Dump Truck [16 h]; Plate Compactor [16 h]; Sew Dia. 200mm Depth: 4.51m -5.5m [6.94] | 3,602.47 | 3,602.47 | 0.00103616332820995 | Cons. | Z4 | Sew | Cons | CS.UNSC | GRPs | SUB.C | Rd 02 | Sew |
| B5.33 31 00.01.02.35 |  | Pipe Laying | 57.68d | 2026-03-09 A | 2026-05-23 A | B5.33 31 00.01.02.23 | 100% |  |  |  |  | Labor [28.35 h]; Foreman [14.17 h]; Plumber Helper [14.17 h]; Plumber [14.17 h]; Operator [14.17 h]; Surveyor [14.17 h]; Surveyor Helper [14.17 h]; Mobile Crane [16 h]; Sew Dia. 200mm Depth: 4.51m -5.5m [62.49] | 32,427.36 | 32,427.36 | 0.00932695018721553 | Cons. | Z4 | Sew | Cons | CS.UNSC | GRPs | SUB.C | Rd 02 | Sew |
| B5.33 31 00.01.02.47 |  | Embedment & Test | 25.59d | 2026-04-29 A | 2026-06-03 A | B5.33 31 00.01.02.35 | 100% |  |  |  |  | Labor [56.7 h]; Foreman [28.35 h]; Plumber Helper [28.35 h]; Plumber [28.35 h]; Operator [56.7 h]; Surveyor [28.35 h]; Surveyor Helper [28.35 h]; Loader [32 h]; Water Tanker [32 h]; Dump Truck [32 h]; Plate Compactor [32 h]; Roller Compactor [32 h]; Sew Dia. 200mm Depth: 4.51m -5.5m [27.78] | 14,415.02 | 14,415.02 | 0.00414613354616581 | Cons. | Z4 | Sew | Cons | CS.UNSC | GRPs | SUB.C | Rd 02 | Sew |
| B5.33 31 00.01.02.59 |  | Backfilling & Warrning Tape | 26.39d | 2026-05-02 A | 2026-06-06 A | B5.33 31 00.01.02.47, B5.33 31 00.01.02.57, B5.33 31 00.01.02.55 | 100% |  |  |  |  | Labor [70.87 h]; Foreman [35.44 h]; Operator [141.75 h]; Surveyor [35.44 h]; Surveyor Helper [35.44 h]; Loader [40 h]; Water Tanker [40 h]; Dump Truck [40 h]; Plate Compactor [40 h]; Roller Compactor [40 h]; Sew Dia. 200mm Depth: 4.51m -5.5m [13.89] | 7,204.94 | 7,204.94 | 0.00207232665641989 | Cons. | Z4 | Sew | Cons | CS.UNSC | GRPs | SUB.C | Rd 02 | Sew |
|  | Manholes | **Manholes ?1200** |  | 2026-02-04 | 2026-10-22 |  |  |  |  |  |  |  |  |  |  |  |  |  |  |  |  |  |  |  |
|  | 2 | **Depth From 0.0m to 1.5m** |  | 2026-02-04 | 2026-10-22 |  |  |  |  |  |  |  |  |  |  |  |  |  |  |  |  |  |  |  |
| B6.33 05 39.01.1377 |  | Excavation & Compaction | 0.34d | 2026-02-04 A | 2026-02-05 A | B5.33 31 00.01.02.11 | 100% |  |  |  |  | Labor [28.35 h]; Foreman [14.17 h]; Operator [28.35 h]; Surveyor [14.17 h]; Surveyor Helper [14.17 h]; Excavator (With Bucket) [16 h]; Water Tanker [16 h]; Dump Truck [16 h]; Plate Compactor [16 h]; MH depth 0 - 1.5m [0.42] | 3,756.4 | 3,756.4 | 0.00071742015752524 | Cons. | Z4 | Sew | Cons | CS.UNSC | Manhole | SUB.C | Rd 02 | Sew |
| B6.33 05 39.01.1387 |  | Blinding Conc, & RC Base | 3d | 2026-04-01 A | 2026-04-04 A | B6.33 05 39.01.1377 | 100% |  |  |  |  | Labor [42.52 h]; Foreman [21.26 h]; Laboratory Officer [21.26 h]; Carpenter [21.26 h]; Steelfixer [21.26 h]; Mason [21.26 h]; MH depth 0 - 1.5m [0.27] | 2,414.83 | 2,414.83 | 0.0004611986726948 | Cons. | Z4 | Sew | Cons | CS.UNSC | Manhole | SUB.C | Rd 02 | Sew |
| B6.33 05 39.01.1397 |  | Manhole Installation | 2d | 2026-04-05 A | 2026-04-06 A | B6.33 05 39.01.1387 | 100% |  |  |  |  | Labor [28.35 h]; Operator [28.35 h]; Surveyor [14.17 h]; Surveyor Helper [14.17 h]; Boom Truck [16 h]; Mobile Crane [16 h]; MH depth 0 - 1.5m [1.34] | 12,035.8 | 12,035.8 | 0.00212664377410211 | Cons. | Z4 | Sew | Cons | CS.UNSC | Manhole | SUB.C | Rd 02 | Sew |
| B6.33 05 39.01.1407 |  | Test, Internal Finishing, Benching & Cover (45.60% Completed) | 78d | 2026-06-17 A | 2026-09-15 A | B6.33 05 39.01.1397 | 100% |  |  |  |  | Labor [28.44 h]; Foreman [14.22 h]; Plumber Helper [14.22 h]; Plumber [14.22 h]; Mason [14.22 h]; MH depth 0 - 1.5m [0.12] | 1,101.16 | 1,101.16 | 0.0004611986726948 | Cons. | Z4 | Sew | Cons | CS.UNSC | Manhole | SUB.C | Rd 02 | Sew |
| B6.33 05 39.01.1417 |  | Backfilling | 9.95d | 2026-06-22 A | 2026-07-02 A | B5.33 31 00.01.02.59 | 100% |  |  |  |  | Labor [70.87 h]; Foreman [35.44 h]; Operator [70.87 h]; Surveyor [35.44 h]; Surveyor Helper [35.44 h]; Loader [40 h]; Water Tanker [40 h]; Dump Truck [40 h]; Plate Compactor [40 h]; MH depth 0 - 1.5m [0.55] | 4,963.82 | 4,963.82 | 0.000948019493872638 | Cons. | Z4 | Sew | Cons | CS.UNSC | Manhole | SUB.C | Rd 02 | Sew |
| B6.33 05 39.01.1407_R |  | Test, Internal Finishing, Benching & Cover(Rem) | 2.18d | 2026-09-20 A | 2026-10-22 | B6.33 05 39.01.1397, B6.33 05 39.01.1407, B5.33 31 00.01.0238_R | 50% | 1.09d | 2026-09-20 | 2026-09-22 | 112.23d | Labor [33.93 h]; Foreman [16.96 h]; Plumber Helper [16.96 h]; Plumber [16.96 h]; Mason [16.96 h]; MH depth 0 - 1.5m [0.15] | 1,313.67 | 1,172.47 | 0.0004611986726948 | Cons. | Z4 | Sew | Cons | CS.UNSC | Manhole | SUB.C | Rd 02 | Sew |
|  | 3 | **Depth From 1.5m to 2.5m** |  | 2026-02-09 | 2026-10-22 |  |  |  |  |  |  |  |  |  |  |  |  |  |  |  |  |  |  |  |
| B6.33 05 39.01.1427 |  | Excavation & Compaction | 1.26d | 2026-02-09 A | 2026-02-10 A | B6.33 05 39.01.1377 | 100% |  |  |  |  | Labor [28.35 h]; Foreman [14.17 h]; Operator [28.35 h]; Surveyor [14.17 h]; Surveyor Helper [14.17 h]; Excavator (With Bucket) [16 h]; Water Tanker [16 h]; Dump Truck [16 h]; Plate Compactor [16 h]; MH depth 1.51 - 2.5m [0.67] | 8,553.04 | 8,553.04 | 0.00163451626522375 | Cons. | Z4 | Sew | Cons | CS.UNSC | Manhole | SUB.C | Rd 02 | Sew |
| B6.33 05 39.01.1437 |  | Blinding Conc, & RC Base | 3d | 2026-05-20 A | 2026-05-23 A | B6.33 05 39.01.1427 | 100% |  |  |  |  | Labor [42.52 h]; Foreman [21.26 h]; Laboratory Officer [21.26 h]; Carpenter [21.26 h]; Steelfixer [21.26 h]; Mason [21.26 h]; MH depth 1.51 - 2.5m [0.45] | 5,701.91 | 5,701.91 | 0.00108965546636573 | Cons. | Z4 | Sew | Cons | CS.UNSC | Manhole | SUB.C | Rd 02 | Sew |
| B6.33 05 39.01.1447 |  | Manhole Installation (43.20% Completed) | 95d | 2026-05-24 A | 2026-09-15 A | B6.33 05 39.01.1437 | 100% |  |  |  |  | Labor [13.47 h]; Operator [13.47 h]; Surveyor [6.74 h]; Surveyor Helper [6.74 h]; Boom Truck [6.91 h]; Mobile Crane [6.91 h]; MH depth 1.51 - 2.5m [0.86] | 10,920.33 | 10,920.33 | 0.00483081828096108 | Cons. | Z4 | Sew | Cons | CS.UNSC | Manhole | SUB.C | Rd 02 | Sew |
| B6.33 05 39.01.1457 |  | Test, Internal Finishing, Benching & Cover (45.60% Completed) | 76.8d | 2026-06-18 A | 2026-09-15 A | B6.33 05 39.01.1447 SS | 100% |  |  |  |  | Labor [28.44 h]; Foreman [14.22 h]; Plumber Helper [14.22 h]; Plumber [14.22 h]; Mason [14.22 h]; MH depth 1.51 - 2.5m [0.25] | 3,193.38 | 3,193.38 | 0.00108965546636573 | Cons. | Z4 | Sew | Cons | CS.UNSC | Manhole | SUB.C | Rd 02 | Sew |
| B6.33 05 39.01.1467 |  | Backfilling | 57.3d | 2026-06-23 A | 2026-08-29 A | B5.33 31 00.01.02.59 | 100% |  |  |  |  | Labor [70.87 h]; Foreman [35.44 h]; Operator [70.87 h]; Surveyor [35.44 h]; Surveyor Helper [35.44 h]; Loader [40 h]; Water Tanker [40 h]; Dump Truck [40 h]; Plate Compactor [40 h]; MH depth 1.51 - 2.5m [0.88] | 11,213.79 | 11,213.79 | 0.0021429945757647 | Cons. | Z4 | Sew | Cons | CS.UNSC | Manhole | SUB.C | Rd 02 | Sew |
| B6.33 05 39.01.1447_R |  | Manhole Installation(Rem) | 1.14d | 2026-09-22 A | 2026-10-07 A | B6.33 05 39.01.1437, B6.33 05 39.01.1447 | 100% |  | 2026-09-16 | 2026-09-17 |  | Labor [17.71 h]; Operator [17.71 h]; Surveyor [8.86 h]; Surveyor Helper [8.86 h]; Boom Truck [9.09 h]; Mobile Crane [9.09 h]; MH depth 1.51 - 2.5m [1.13] | 14,358.22 | 14,358.22 | 0.00483081828096108 | Cons. | Z4 | Sew | Cons | CS.UNSC | Manhole | SUB.C | Rd 02 | Sew |
| B6.33 05 39.01.1457_R |  | Test, Internal Finishing, Benching & Cover(Rem) | 2.18d | 2026-09-26 A | 2026-10-22 | B6.33 05 39.01.1447_R SS, B6.33 05 39.01.1457 | 50% | 1.09d | 2026-09-16 | 2026-09-19 | 112.23d | Labor [33.93 h]; Foreman [16.96 h]; Plumber Helper [16.96 h]; Plumber [16.96 h]; Mason [16.96 h]; MH depth 1.51 - 2.5m [0.3] | 3,809.64 | 3,323.86 | 0.00108965546636573 | Cons. | Z4 | Sew | Cons | CS.UNSC | Manhole | SUB.C | Rd 02 | Sew |
|  | 4 | **Depth From 2.5m to 3.5m** |  | 2026-02-18 | 2026-10-22 |  |  |  |  |  |  |  |  |  |  |  |  |  |  |  |  |  |  |  |
| B6.33 05 39.01.1477 |  | Excavation & Compaction | 0.5d | 2026-02-18 A | 2026-02-19 A | B6.33 05 39.01.1427 | 100% |  |  |  |  | Labor [28.35 h]; Foreman [14.17 h]; Operator [28.35 h]; Surveyor [14.17 h]; Surveyor Helper [14.17 h]; Excavator (With Bucket) [16 h]; Water Tanker [16 h]; Dump Truck [16 h]; Plate Compactor [16 h]; MH depth 2.51 - 3.5m [0.82] | 12,557.47 | 12,557.47 | 0.00239967188397841 | Cons. | Z4 | Sew | Cons | CS.UNSC | Manhole | SUB.C | Rd 02 | Sew |
| B6.33 05 39.01.1487 |  | Blinding Conc, & RC Base | 4d | 2026-04-05 A | 2026-04-08 A | B6.33 05 39.01.1477 | 100% |  |  |  |  | Labor [42.52 h]; Foreman [21.26 h]; Laboratory Officer [21.26 h]; Carpenter [21.26 h]; Steelfixer [21.26 h]; Mason [21.26 h]; MH depth 2.51 - 3.5m [0.55] | 8,447.73 | 8,447.73 | 0.00161432058487404 | Cons. | Z4 | Sew | Cons | CS.UNSC | Manhole | SUB.C | Rd 02 | Sew |
| B6.33 05 39.01.1497 |  | Manhole Installation (43.20% Completed) | 98d | 2026-05-20 A | 2026-09-15 A | B6.33 05 39.01.1487 | 100% |  |  |  |  | Labor [13.47 h]; Operator [13.47 h]; Surveyor [6.74 h]; Surveyor Helper [6.74 h]; Boom Truck [6.91 h]; Mobile Crane [6.91 h]; MH depth 2.51 - 3.5m [1.06] | 16,274.48 | 16,274.48 | 0.00719901565193524 | Cons. | Z4 | Sew | Cons | CS.UNSC | Manhole | SUB.C | Rd 02 | Sew |
| B6.33 05 39.01.1507 |  | Test, Internal Finishing, Benching & Cover (45.60% Completed) | 77d | 2026-06-18 A | 2026-09-15 A | B6.33 05 39.01.1497 SS | 100% |  |  |  |  | Labor [28.44 h]; Foreman [14.22 h]; Plumber Helper [14.22 h]; Plumber [14.22 h]; Mason [14.22 h]; MH depth 2.51 - 3.5m [0.25] | 3,852.17 | 3,852.17 | 0.00161432058487404 | Cons. | Z4 | Sew | Cons | CS.UNSC | Manhole | SUB.C | Rd 02 | Sew |
| B6.33 05 39.01.1517 |  | Backfilling | 57.5d | 2026-06-23 A | 2026-08-29 A | B5.33 31 00.01.02.59 | 100% |  |  |  |  | Labor [70.87 h]; Foreman [35.44 h]; Operator [70.87 h]; Surveyor [35.44 h]; Surveyor Helper [35.44 h]; Loader [40 h]; Water Tanker [40 h]; Dump Truck [40 h]; Plate Compactor [40 h]; MH depth 2.51 - 3.5m [1.1] | 16,895.51 | 16,895.51 | 0.00322864944389824 | Cons. | Z4 | Sew | Cons | CS.UNSC | Manhole | SUB.C | Rd 02 | Sew |
| B6.33 05 39.01.1507_R |  | Test, Internal Finishing, Benching & Cover(Rem) | 2.18d | 2026-09-19 A | 2026-10-22 | B6.33 05 39.01.1497_R SS, B6.33 05 39.01.1507, B6.33 05 39.01.1457_R | 50% | 1.09d | 2026-09-19 | 2026-09-21 | 112.23d | Labor [33.93 h]; Foreman [16.96 h]; Plumber Helper [16.96 h]; Plumber [16.96 h]; Mason [16.96 h]; MH depth 2.51 - 3.5m [0.3] | 4,595.57 | 4,138.54 | 0.00161432058487404 | Cons. | Z4 | Sew | Cons | CS.UNSC | Manhole | SUB.C | Rd 02 | Sew |
| B6.33 05 39.01.1497_R |  | Manhole Installation(Rem) | 1.14d | 2026-09-21 A | 2026-10-06 A | B6.33 05 39.01.1487, B6.33 05 39.01.1497 | 100% |  | 2026-09-16 | 2026-09-17 |  | Labor [17.71 h]; Operator [17.71 h]; Surveyor [8.86 h]; Surveyor Helper [8.86 h]; Boom Truck [9.09 h]; Mobile Crane [9.09 h]; MH depth 2.51 - 3.5m [1.4] | 21,397.93 | 21,397.93 | 0.00719901565193524 | Cons. | Z4 | Sew | Cons | CS.UNSC | Manhole | SUB.C | Rd 02 | Sew |

| ID | WBS | Activity | Duration | Start | Finish | Predecessors | Complete | Remaining | Planned start | Planned finish | Total float | Resources | Cost | Actual cost | Weight % | DMM2 Weekly Progress | DMM2 Zones | Networks & Stations | DMM2 Phases | UNASCO | Networks Components | Subcontractors works | Dmm2 Roads | Yellow Sheet |
| --- | --- | --- | --- | --- | --- | --- | --- | --- | --- | --- | --- | --- | --- | --- | --- | --- | --- | --- | --- | --- | --- | --- | --- | --- |
|  | 1 | **Depth From 3.5m to 4.5m** |  | 2026-02-22 | 2026-10-22 |  |  |  |  |  |  |  |  |  |  |  |  |  |  |  |  |  |  |  |
| B6.33 05 39.01.1527 |  | Excavation & Compaction | 0.17d | 2026-02-22 A | 2026-02-23 A | B6.33 05 39.01.1477 | 100% |  | 2026-02-23 | 2026-02-23 |  | Labor [28.35 h]; Foreman [14.17 h]; Operator [28.35 h]; Surveyor [14.17 h]; Surveyor Helper [14.17 h]; Excavator (With Bucket) [16 h]; Water Tanker [16 h]; Dump Truck [16 h]; Plate Compactor [16 h]; MH depth 3.51 -4.5m [1.55] | 31,151.59 | 31,151.59 | 0.00594936291235462 | Cons. | Z4 | Sew | Cons | CS.UNSC | Manhole | SUB.C | Rd 02 | Sew |
| B6.33 05 39.01.1537 |  | Blinding Conc, & RC Base | 32.52d | 2026-05-20 A | 2026-07-01 A | B6.33 05 39.01.1527 | 100% |  |  |  |  | Labor [42.52 h]; Foreman [21.26 h]; Laboratory Officer [21.26 h]; Carpenter [21.26 h]; Steelfixer [21.26 h]; Mason [21.26 h]; MH depth 3.51 -4.5m [1.03] | 20,667.88 | 20,667.88 | 0.00394717347069681 | Cons. | Z4 | Sew | Cons | CS.UNSC | Manhole | SUB.C | Rd 02 | Sew |
| B6.33 05 39.01.1547 |  | Manhole Installation (43.20% Completed) | 95d | 2026-05-24 A | 2026-09-15 A | B6.33 05 39.01.1537 | 100% |  |  |  |  | Labor [13.47 h]; Operator [13.47 h]; Surveyor [6.74 h]; Surveyor Helper [6.74 h]; Boom Truck [6.91 h]; Mobile Crane [6.91 h]; MH depth 3.51 -4.5m [2.01] | 40,372.46 | 40,372.46 | 0.0178480887370639 | Cons. | Z4 | Sew | Cons | CS.UNSC | Manhole | SUB.C | Rd 02 | Sew |
| B6.33 05 39.01.1557 |  | Test, Internal Finishing, Benching & Cover (45.60% Completed) | 77.32d | 2026-06-17 A | 2026-09-15 A | B6.33 05 39.01.1547 SS | 100% |  |  |  |  | Labor [28.44 h]; Foreman [14.22 h]; Plumber Helper [14.22 h]; Plumber [14.22 h]; Mason [14.22 h]; MH depth 3.51 -4.5m [0.47] | 9,424.55 | 9,424.55 | 0.00394717347069681 | Cons. | Z4 | Sew | Cons | CS.UNSC | Manhole | SUB.C | Rd 02 | Sew |
| B6.33 05 39.01.1567 |  | Backfilling | 59.3d | 2026-06-22 A | 2026-08-30 A | B6.33 05 39.01.1517, B6.33 05 39.01.1467, B6.33 05 39.01.1417 | 100% |  |  |  |  | Labor [70.87 h]; Foreman [35.44 h]; Operator [70.87 h]; Surveyor [35.44 h]; Surveyor Helper [35.44 h]; Loader [40 h]; Water Tanker [40 h]; Dump Truck [40 h]; Plate Compactor [40 h]; MH depth 3.51 -4.5m [2.06] | 41,335.76 | 41,335.76 | 0.00789434694139357 | Cons. | Z4 | Sew | Cons | CS.UNSC | Manhole | SUB.C | Rd 02 | Sew |
| B6.33 05 39.01.1557_R |  | Test, Internal Finishing, Benching & Cover(Rem) | 2.18d | 2026-09-21 A | 2026-10-22 | B6.33 05 39.01.1547_R SS, B6.33 05 39.01.1557, B6.33 05 39.01.1507_R, B5.33 31 00.01.0240_R | 50% | 1.09d | 2026-09-21 | 2026-09-24 | 112.23d | Labor [33.93 h]; Foreman [16.96 h]; Plumber Helper [16.96 h]; Plumber [16.96 h]; Mason [16.96 h]; MH depth 3.51 -4.5m [0.56] | 11,243.33 | 10,001.85 | 0.00394717347069681 | Cons. | Z4 | Sew | Cons | CS.UNSC | Manhole | SUB.C | Rd 02 | Sew |
| B6.33 05 39.01.1547_R |  | Manhole Installation(Rem) | 1.14d | 2026-09-24 A | 2026-10-06 A | B6.33 05 39.01.1537, B6.33 05 39.01.1547 | 100% |  | 2026-09-16 | 2026-09-17 |  | Labor [17.71 h]; Operator [17.71 h]; Surveyor [8.86 h]; Surveyor Helper [8.86 h]; Boom Truck [9.09 h]; Mobile Crane [9.09 h]; MH depth 3.51 -4.5m [2.65] | 53,082.31 | 53,082.31 | 0.0178480887370639 | Cons. | Z4 | Sew | Cons | CS.UNSC | Manhole | SUB.C | Rd 02 | Sew |
|  | 1 | **Depth From 3.5m to 4.5m Backdrop** |  | 2026-06-03 | 2026-10-22 |  |  |  |  |  |  |  |  |  |  |  |  |  |  |  |  |  |  |  |
| B6.33 05 39.01.1577 |  | Excavation & Compaction | 2d | 2026-06-03 A | 2026-06-04 A | B6.33 05 39.01.1527 | 100% |  |  |  |  | Labor [28.35 h]; Foreman [14.17 h]; Operator [28.35 h]; Surveyor [14.17 h]; Surveyor Helper [14.17 h]; Excavator (With Bucket) [16 h]; Water Tanker [16 h]; Dump Truck [16 h]; Plate Compactor [16 h]; MH depth 3.51- 4.5 m with back drop [0.3] | 6,020.46 | 6,020.46 | 0.0011441053203377 | Cons. | Z4 | Sew | Cons | CS.UNSC | Manhole | SUB.C | Rd 02 | Sew |
| B6.33 05 39.01.1587 |  | Blinding Conc, & RC Base | 3d | 2026-06-06 A | 2026-06-08 A | B6.33 05 39.01.1577 | 100% |  |  |  |  | Labor [42.52 h]; Foreman [21.26 h]; Laboratory Officer [21.26 h]; Carpenter [21.26 h]; Steelfixer [21.26 h]; Mason [21.26 h]; MH depth 3.51- 4.5 m with back drop [0.2] | 3,913.3 | 3,913.3 | 0.000743668458219507 | Cons. | Z4 | Sew | Cons | CS.UNSC | Manhole | SUB.C | Rd 02 | Sew |
| B6.33 05 39.01.1597 |  | Manhole Installation (43.20% Completed) | 78d | 2026-06-17 A | 2026-09-15 A | B6.33 05 39.01.1587 | 100% |  |  |  |  | Labor [13.47 h]; Operator [13.47 h]; Surveyor [6.74 h]; Surveyor Helper [6.74 h]; Boom Truck [6.91 h]; Mobile Crane [6.91 h]; MH depth 3.51- 4.5 m with back drop [0.39] | 7,802.54 | 7,802.54 | 0.00343232475712767 | Cons. | Z4 | Sew | Cons | CS.UNSC | Manhole | SUB.C | Rd 02 | Sew |
| B6.33 05 39.01.1607 |  | Test, Internal Finishing, Benching & Cover (45.60% Completed) | 76d | 2026-06-20 A | 2026-09-15 A | B6.33 05 39.01.1597 SS | 100% |  |  |  |  | Labor [28.44 h]; Foreman [14.22 h]; Plumber Helper [14.22 h]; Plumber [14.22 h]; Mason [14.22 h]; MH depth 3.51- 4.5 m with back drop [0.09] | 1,784.46 | 1,784.46 | 0.000743668458219507 | Cons. | Z4 | Sew | Cons | CS.UNSC | Manhole | SUB.C | Rd 02 | Sew |
| B6.33 05 39.01.1617 |  | Backfilling | 59.3d | 2026-06-22 A | 2026-08-30 A | B6.33 05 39.01.1567 | 100% |  |  |  |  | Labor [70.87 h]; Foreman [35.44 h]; Operator [70.87 h]; Surveyor [35.44 h]; Surveyor Helper [35.44 h]; Loader [40 h]; Water Tanker [40 h]; Dump Truck [40 h]; Plate Compactor [40 h]; MH depth 3.51- 4.5 m with back drop [0.41] | 8,127.62 | 8,127.62 | 0.00154454218245589 | Cons. | Z4 | Sew | Cons | CS.UNSC | Manhole | SUB.C | Rd 02 | Sew |
| B6.33 05 39.01.1597_R |  | Manhole Installation(Rem) | 1.14d | 2026-09-20 A | 2026-10-05 A | B6.33 05 39.01.1587, B6.33 05 39.01.1597 | 100% |  | 2026-09-16 | 2026-09-17 |  | Labor [17.71 h]; Operator [17.71 h]; Surveyor [8.86 h]; Surveyor Helper [8.86 h]; Boom Truck [9.09 h]; Mobile Crane [9.09 h]; MH depth 3.51- 4.5 m with back drop [0.51] | 10,258.89 | 10,258.89 | 0.00343232475712767 | Cons. | Z4 | Sew | Cons | CS.UNSC | Manhole | SUB.C | Rd 02 | Sew |
| B6.33 05 39.01.1607_R |  | Test, Internal Finishing, Benching & Cover(Rem) | 2.18d | 2026-09-24 A | 2026-10-22 | B6.33 05 39.01.1597_R SS, B6.33 05 39.01.1607, B6.33 05 39.01.1557_R, B6.33 05 39.01.1407_R | 50% | 1.09d | 2026-09-24 | 2026-09-27 | 112.23d | Labor [33.93 h]; Foreman [16.96 h]; Plumber Helper [16.96 h]; Plumber [16.96 h]; Mason [16.96 h]; MH depth 3.51- 4.5 m with back drop [0.11] | 2,128.83 | 1,864.62 | 0.000743668458219507 | Cons. | Z4 | Sew | Cons | CS.UNSC | Manhole | SUB.C | Rd 02 | Sew |
|  | Stormwater Network | **Stormwater Network** |  | 2026-01-07 | 2026-10-21 |  |  |  |  |  |  |  |  |  |  |  |  |  |  |  |  |  |  |  |
|  | GRP | **GRP** |  | 2026-01-07 | 2026-10-21 |  |  |  |  |  |  |  |  |  |  |  |  |  |  |  |  |  |  |  |
|  | ?4001 | **?500** |  | 2026-01-17 | 2026-06-04 |  |  |  |  |  |  |  |  |  |  |  |  |  |  |  |  |  |  |  |
|  | 3 | **Depth From 1.5m to 2.5m** |  | 2026-01-18 | 2026-06-04 |  |  |  |  |  |  |  |  |  |  |  |  |  |  |  |  |  |  |  |
| B6.33 42 11.05-1.1 |  | Excavation | 78.21d | 2026-01-18 A | 2026-05-03 A | B6.33 05 39.01.4227, B5.33 31 00.01.02.11 | 100% |  |  |  |  | Labor [42.52 h]; Foreman [21.26 h]; Operator [42.52 h]; Surveyor [21.26 h]; Surveyor Helper [21.26 h]; Excavator (With Bucket) [24 h]; Water Tanker [24 h]; Dump Truck [24 h]; Plate Compactor [24 h]; 1.51m - 2.5m [12.84] | 7,427.81 | 7,427.81 | 0.00678741471010152 | Cons. | Z4 | Storm | Cons | CS.UNSC | GRPs | SUB.C | Rd 02 | Strm |
| B6.33 42 11.05-1.15 |  | Sand Bedding | 81.16d | 2026-01-21 A | 2026-05-10 A | B6.33 42 11.05-1.1 | 100% |  |  |  |  | Labor [28.35 h]; Foreman [14.17 h]; Operator [56.7 h]; Surveyor [14.17 h]; Surveyor Helper [14.17 h]; Loader [16 h]; Water Tanker [16 h]; Dump Truck [16 h]; Plate Compactor [16 h]; 1.51m - 2.5m [3.21] | 1,856.05 | 1,856.05 | 0.00169602876081295 | Cons. | Z4 | Storm | Cons | CS.UNSC | GRPs | SUB.C | Rd 02 | Strm |
| B6.33 42 11.05-1.29 |  | Pipe Laying | 85.46d | 2026-01-24 A | 2026-05-17 A | B6.33 42 11.05-1.15 | 100% |  |  |  |  | Labor [42.52 h]; Foreman [21.26 h]; Plumber Helper [21.26 h]; Plumber [21.26 h]; Operator [21.26 h]; Surveyor [21.26 h]; Surveyor Helper [21.26 h]; Mobile Crane [24 h]; 1.51m - 2.5m [28.88] | 16,711.67 | 16,711.67 | 0.0152708581810161 | Cons. | Z4 | Storm | Cons | CS.UNSC | GRPs | SUB.C | Rd 02 | Strm |
| B6.33 42 11.05-1.43 |  | Embedment & Test | 88.51d | 2026-01-27 A | 2026-05-24 A | B6.33 42 11.05-1.29 | 100% |  |  |  |  | Labor [56.7 h]; Foreman [28.35 h]; Plumber Helper [28.35 h]; Plumber [28.35 h]; Operator [56.7 h]; Surveyor [28.35 h]; Surveyor Helper [28.35 h]; Loader [32 h]; Water Tanker [32 h]; Dump Truck [32 h]; Plate Compactor [32 h]; Roller Compactor [32 h]; 1.51m - 2.5m [12.84] | 7,427.81 | 7,427.81 | 0.00678741471010152 | Cons. | Z4 | Storm | Cons | CS.UNSC | GRPs | SUB.C | Rd 02 | Strm |
| B6.33 42 11.05-1.57 |  | Backfilling & Warrning Tape | 64.15d | 2026-03-10 A | 2026-06-04 A | B6.33 42 11.05-1.43 | 100% |  |  |  |  | Labor [70.87 h]; Foreman [35.44 h]; Operator [141.75 h]; Surveyor [35.44 h]; Surveyor Helper [35.44 h]; Loader [40 h]; Water Tanker [40 h]; Dump Truck [40 h]; Plate Compactor [40 h]; Roller Compactor [40 h]; 1.51m - 2.5m [6.42] | 3,713.91 | 3,713.91 | 0.00339370735505079 | Cons. | Z4 | Storm | Cons | CS.UNSC | GRPs | SUB.C | Rd 02 | Strm |

| ID | WBS | Activity | Duration | Start | Finish | Predecessors | Complete | Remaining | Planned start | Planned finish | Total float | Resources | Cost | Actual cost | Weight % | DMM2 Weekly Progress | DMM2 Zones | Networks & Stations | DMM2 Phases | UNASCO | Networks Components | Subcontractors works | Dmm2 Roads | Yellow Sheet |
| --- | --- | --- | --- | --- | --- | --- | --- | --- | --- | --- | --- | --- | --- | --- | --- | --- | --- | --- | --- | --- | --- | --- | --- | --- |
|  | 1 | **Depth From 2.5m to 3.5m** |  | 2026-01-17 | 2026-06-03 |  |  |  |  |  |  |  |  |  |  |  |  |  |  |  |  |  |  |  |
| B6.33 42 11.05-1.3 |  | Excavation | 102.29d | 2026-01-17 A | 2026-06-03 A | B6.33 42 11.05-1.1 | 100% |  |  |  |  | Labor [28.35 h]; Foreman [14.17 h]; Operator [28.35 h]; Surveyor [14.17 h]; Surveyor Helper [14.17 h]; Excavator (With Bucket) [16 h]; Water Tanker [16 h]; Dump Truck [16 h]; Plate Compactor [16 h]; 2.51m - 3.5m [12.94] | 9,329.77 | 9,329.77 | 0.00213713931740605 | Cons. | Z4 | Storm | Cons | CS.UNSC | GRPs | SUB.C | Rd 02 | Strm |
| B6.33 42 11.05-1.17 |  | Sand Bedding | 81.16d | 2026-01-21 A | 2026-05-10 A | B6.33 42 11.05-1.3 | 100% |  |  |  |  | Labor [28.35 h]; Foreman [14.17 h]; Operator [56.7 h]; Surveyor [14.17 h]; Surveyor Helper [14.17 h]; Loader [16 h]; Water Tanker [16 h]; Dump Truck [16 h]; Plate Compactor [16 h]; 2.51m - 3.5m [3.24] | 2,334.69 | 2,334.69 | 0.000534799059216143 | Cons. | Z4 | Storm | Cons | CS.UNSC | GRPs | SUB.C | Rd 02 | Strm |
| B6.33 42 11.05-1.31 |  | Pipe Laying | 86.46d | 2026-01-22 A | 2026-05-17 A | B6.33 42 11.05-1.17 | 100% |  |  |  |  | Labor [28.35 h]; Foreman [14.17 h]; Plumber Helper [14.17 h]; Plumber [14.17 h]; Operator [14.17 h]; Surveyor [14.17 h]; Surveyor Helper [14.17 h]; Mobile Crane [16 h]; 2.51m - 3.5m [29.11] | 20,985.26 | 20,985.26 | 0.00480702077456973 | Cons. | Z4 | Storm | Cons | CS.UNSC | GRPs | SUB.C | Rd 02 | Strm |
| B6.33 42 11.05-1.45 |  | Embedment & Test | 91.51d | 2026-01-24 A | 2026-05-24 A | B6.33 42 11.05-1.31 | 100% |  |  |  |  | Labor [42.52 h]; Foreman [21.26 h]; Plumber Helper [21.26 h]; Plumber [21.26 h]; Operator [42.52 h]; Surveyor [21.26 h]; Surveyor Helper [21.26 h]; Loader [24 h]; Water Tanker [24 h]; Dump Truck [24 h]; Plate Compactor [24 h]; Roller Compactor [24 h]; 2.51m - 3.5m [12.94] | 9,329.77 | 9,329.77 | 0.00213713931740605 | Cons. | Z4 | Storm | Cons | CS.UNSC | GRPs | SUB.C | Rd 02 | Strm |
| B6.33 42 11.05-1.59 |  | Backfilling & Warrning Tape | 22.17d | 2026-05-04 A | 2026-06-03 A | B6.33 42 11.05-1.45, B6.33 42 11.01-1026 | 100% |  |  |  |  | Labor [70.87 h]; Foreman [35.44 h]; Operator [141.75 h]; Surveyor [35.44 h]; Surveyor Helper [35.44 h]; Loader [40 h]; Water Tanker [40 h]; Dump Truck [40 h]; Plate Compactor [40 h]; Roller Compactor [40 h]; 2.51m - 3.5m [6.47] | 4,660.4 | 4,660.4 | 0.00106754119897377 | Cons. | Z4 | Storm | Cons | CS.UNSC | GRPs | SUB.C | Rd 02 | Strm |
|  | ?4002 | **?600** |  | 2026-01-07 | 2026-10-21 |  |  |  |  |  |  |  |  |  |  |  |  |  |  |  |  |  |  |  |
|  | 4 | **Depth From 1.5m to 2.5m** |  | 2026-01-07 | 2026-10-21 |  |  |  |  |  |  |  |  |  |  |  |  |  |  |  |  |  |  |  |
| B6.33 42 11.05-1.5 |  | Excavation (69.55% Completed) | 200.31d | 2026-01-07 A | 2026-09-15 A | B6.33 42 11.05-1.3 | 100% |  |  |  |  | Labor [21.69 h]; Foreman [10.84 h]; Operator [21.69 h]; Surveyor [10.84 h]; Surveyor Helper [10.84 h]; Excavator (With Bucket) [11.13 h]; Water Tanker [11.13 h]; Dump Truck [11.13 h]; Plate Compactor [11.13 h]; 1.51m - 2.5m [6.62] | 5,606.75 | 5,606.75 | 5.30950164986435E-005 | Cons. | Z4 | Storm | Cons | CS.UNSC | GRPs | SUB.C | Rd 02 | Strm |
| B6.33 42 11.05-1.19 |  | Sand Bedding (69.55% Completed) | 198.81d | 2026-01-10 A | 2026-09-15 A | B6.33 42 11.05-1.5 FF | 100% |  |  |  |  | Labor [21.69 h]; Foreman [10.84 h]; Operator [43.38 h]; Surveyor [10.84 h]; Surveyor Helper [10.84 h]; Loader [11.13 h]; Water Tanker [11.13 h]; Dump Truck [11.13 h]; Plate Compactor [11.13 h]; 1.51m - 2.5m [6.62] | 5,606.75 | 5,606.75 | 5.30950164986435E-005 | Cons. | Z4 | Storm | Cons | CS.UNSC | GRPs | SUB.C | Rd 02 | Strm |
| B6.33 42 11.05-1.33 |  | Pipe Laying (69.55% Completed) | 196.06d | 2026-01-12 A | 2026-09-15 A | B6.33 42 11.05-1.19 FF | 100% |  |  |  |  | Labor [21.69 h]; Foreman [10.84 h]; Plumber Helper [10.84 h]; Plumber [10.84 h]; Operator [10.84 h]; Surveyor [10.84 h]; Surveyor Helper [10.84 h]; Mobile Crane [11.13 h]; 1.51m - 2.5m [15.06] | 12,742.64 | 12,742.64 | 0.000120670801288806 | Cons. | Z4 | Storm | Cons | CS.UNSC | GRPs | SUB.C | Rd 02 | Strm |
| B6.33 42 11.05-1.47 |  | Embedment & Test (69.55% Completed) | 193d | 2026-01-16 A | 2026-09-15 A | B6.33 42 11.05-1.33 FF | 100% |  | 2026-01-17 | 2026-09-15 |  | Labor [43.38 h]; Foreman [21.69 h]; Plumber Helper [21.69 h]; Plumber [21.69 h]; Operator [43.38 h]; Surveyor [21.69 h]; Surveyor Helper [21.69 h]; Loader [22.26 h]; Water Tanker [22.26 h]; Dump Truck [22.26 h]; Plate Compactor [22.26 h]; Roller Compactor [22.26 h]; 1.51m - 2.5m [1.81] | 1,529.11 | 1,529.11 | 1.44804590450846E-005 | Cons. | Z4 | Storm | Cons | CS.UNSC | GRPs | SUB.C | Rd 02 | Strm |
| B6.33 42 11.05-1.61 |  | Backfilling & Warrning Tape (69.55% Completed) | 79.54d | 2026-06-15 A | 2026-09-15 A | B6.33 42 11.01-1028, B6.33 42 11.05-1.47 SS | 100% |  |  |  |  | Labor [54.22 h]; Foreman [27.11 h]; Operator [108.45 h]; Surveyor [27.11 h]; Surveyor Helper [27.11 h]; Loader [27.82 h]; Water Tanker [27.82 h]; Dump Truck [27.82 h]; Plate Compactor [27.82 h]; Roller Compactor [27.82 h]; 1.51m - 2.5m [3.31] | 2,803.37 | 2,803.37 | 2.65475082493218E-005 | Cons. | Z4 | Storm | Cons | CS.UNSC | GRPs | SUB.C | Rd 02 | Strm |
| B6.33 42 11.05-1.47_R |  | Embedment & Test(Rem) | 2.35d | 2026-09-16 A | 2026-10-21 | B6.33 42 11.05-1.33_R FF, B6.33 42 11.05-1.47 | 90% | 0.24d | 2026-09-16 | 2026-09-19 | 113.09d | Labor [18.99 h]; Foreman [9.5 h]; Plumber Helper [9.5 h]; Plumber [9.5 h]; Operator [18.99 h]; Surveyor [9.5 h]; Surveyor Helper [9.5 h]; Loader [9.74 h]; Water Tanker [9.74 h]; Dump Truck [9.74 h]; Plate Compactor [9.74 h]; Roller Compactor [9.74 h]; 1.51m - 2.5m [0.79] | 669.4 | 655.45 | 1.44804590450846E-005 | Cons. | Z4 | Storm | Cons | CS.UNSC | GRPs | SUB.C | Rd 02 | Strm |
| B6.33 42 11.05-1.61_R |  | Backfilling & Warrning Tape(Rem) | 2.69d | 2026-09-16 A | 2026-10-14 A | B6.33 42 11.01-1028, B6.33 42 11.05-1.47_R SS, B6.33 42 11.05-1.61 | 100% |  | 2026-09-16 | 2026-09-20 |  | Labor [23.74 h]; Foreman [11.87 h]; Operator [47.48 h]; Surveyor [11.87 h]; Surveyor Helper [11.87 h]; Loader [12.18 h]; Water Tanker [12.18 h]; Dump Truck [12.18 h]; Plate Compactor [12.18 h]; Roller Compactor [12.18 h]; 1.51m - 2.5m [1.45] | 1,227.24 | 1,227.24 | 2.65475082493218E-005 | Cons. | Z4 | Storm | Cons | CS.UNSC | GRPs | SUB.C | Rd 02 | Strm |
| B6.33 42 11.05-1.5_R |  | Excavation(Rem) | 3d | 2026-09-22 A | 2026-10-14 A | B6.33 42 11.05-1.3, B6.33 42 11.05-1.5 | 100% |  | 2026-09-16 | 2026-09-19 |  | Labor [9.5 h]; Foreman [4.75 h]; Operator [9.5 h]; Surveyor [4.75 h]; Surveyor Helper [4.75 h]; Excavator (With Bucket) [4.87 h]; Water Tanker [4.87 h]; Dump Truck [4.87 h]; Plate Compactor [4.87 h]; 1.51m - 2.5m [2.9] | 2,454.48 | 2,454.48 | 5.30950164986435E-005 | Cons. | Z4 | Storm | Cons | CS.UNSC | GRPs | SUB.C | Rd 02 | Strm |
| B6.33 42 11.05-1.33_R |  | Pipe Laying(Rem) | 3d | 2026-09-24 A | 2026-10-14 A | B6.33 42 11.05-1.19_R FF, B6.33 42 11.05-1.33 | 100% |  | 2026-09-16 | 2026-09-19 |  | Labor [9.5 h]; Foreman [4.75 h]; Plumber Helper [4.75 h]; Plumber [4.75 h]; Operator [4.75 h]; Surveyor [4.75 h]; Surveyor Helper [4.75 h]; Mobile Crane [4.87 h]; 1.51m - 2.5m [6.59] | 5,578.39 | 5,578.39 | 0.000120670801288806 | Cons. | Z4 | Storm | Cons | CS.UNSC | GRPs | SUB.C | Rd 02 | Strm |
| B6.33 42 11.05-1.19_R |  | Sand Bedding(Rem) | 3d | 2026-09-26 A | 2026-10-14 A | B6.33 42 11.05-1.5_R FF, B6.33 42 11.05-1.19 | 100% |  | 2026-09-16 | 2026-09-19 |  | Labor [9.5 h]; Foreman [4.75 h]; Operator [18.99 h]; Surveyor [4.75 h]; Surveyor Helper [4.75 h]; Loader [4.87 h]; Water Tanker [4.87 h]; Dump Truck [4.87 h]; Plate Compactor [4.87 h]; 1.51m - 2.5m [2.9] | 2,454.48 | 2,454.48 | 5.30950164986435E-005 | Cons. | Z4 | Storm | Cons | CS.UNSC | GRPs | SUB.C | Rd 02 | Strm |
|  | ?40021 | **?700** |  | 2026-02-02 | 2026-10-21 |  |  |  |  |  |  |  |  |  |  |  |  |  |  |  |  |  |  |  |
|  | 4 | **Depth From 1.5m to 2.5m** |  | 2026-02-02 | 2026-10-21 |  |  |  |  |  |  |  |  |  |  |  |  |  |  |  |  |  |  |  |
| B6.33 42 11.05-1.7 |  | Excavation (69.55% Completed) | 178.81d | 2026-02-02 A | 2026-09-15 A | B6.33 42 11.05-1.5 SS | 100% |  |  |  |  | Labor [21.69 h]; Foreman [10.84 h]; Operator [21.69 h]; Surveyor [10.84 h]; Surveyor Helper [10.84 h]; Excavator (With Bucket) [11.13 h]; Water Tanker [11.13 h]; Dump Truck [11.13 h]; Plate Compactor [11.13 h]; 1.51m - 2.5m [9.16] | 8,427.24 | 8,427.24 | 0.00417736572342047 | Cons. | Z4 | Storm | Cons | CS.UNSC | GRPs | SUB.C | Rd 02 | Strm |
| B6.33 42 11.05-1.21 |  | Sand Bedding (69.55% Completed) | 176.06d | 2026-02-04 A | 2026-09-15 A | B6.33 42 11.05-1.7 FF | 100% |  |  |  |  | Labor [21.69 h]; Foreman [10.84 h]; Operator [43.38 h]; Surveyor [10.84 h]; Surveyor Helper [10.84 h]; Loader [11.13 h]; Water Tanker [11.13 h]; Dump Truck [11.13 h]; Plate Compactor [11.13 h]; 1.51m - 2.5m [2.29] | 2,108.13 | 2,108.13 | 0.00104499783653133 | Cons. | Z4 | Storm | Cons | CS.UNSC | GRPs | SUB.C | Rd 02 | Strm |
| B6.33 42 11.05-1.35 |  | Pipe Laying (69.55% Completed) | 174.31d | 2026-02-07 A | 2026-09-15 A | B6.33 42 11.05-1.21 FF | 100% |  |  |  |  | Labor [21.69 h]; Foreman [10.84 h]; Plumber Helper [10.84 h]; Plumber [10.84 h]; Operator [10.84 h]; Surveyor [10.84 h]; Surveyor Helper [10.84 h]; Mobile Crane [11.13 h]; 1.51m - 2.5m [20.61] | 18,962.61 | 18,962.61 | 0.0093997292833722 | Cons. | Z4 | Storm | Cons | CS.UNSC | GRPs | SUB.C | Rd 02 | Strm |
| B6.33 42 11.05-1.49 |  | Embedment & Test (69.55% Completed) | 173.81d | 2026-02-08 A | 2026-09-15 A | B6.33 42 11.05-1.35 FF | 100% |  |  |  |  | Labor [43.38 h]; Foreman [21.69 h]; Plumber Helper [21.69 h]; Plumber [21.69 h]; Operator [43.38 h]; Surveyor [21.69 h]; Surveyor Helper [21.69 h]; Loader [22.26 h]; Water Tanker [22.26 h]; Dump Truck [22.26 h]; Plate Compactor [22.26 h]; Roller Compactor [22.26 h]; 1.51m - 2.5m [9.16] | 8,427.24 | 8,427.24 | 0.00417736572342047 | Cons. | Z4 | Storm | Cons | CS.UNSC | GRPs | SUB.C | Rd 02 | Strm |
| B6.33 42 11.05-1.63 |  | Backfilling & Warrning Tape (69.55% Completed) | 77.43d | 2026-06-17 A | 2026-09-15 A | B6.33 42 11.05-1.59, B6.33 42 11.05-1.49 SS | 100% |  |  |  |  | Labor [54.22 h]; Foreman [27.11 h]; Operator [108.45 h]; Surveyor [27.11 h]; Surveyor Helper [27.11 h]; Loader [27.82 h]; Water Tanker [27.82 h]; Dump Truck [27.82 h]; Plate Compactor [27.82 h]; Roller Compactor [27.82 h]; 1.51m - 2.5m [4.58] | 4,216.27 | 4,216.27 | 0.00208999567306265 | Cons. | Z4 | Storm | Cons | CS.UNSC | GRPs | SUB.C | Rd 02 | Strm |
| B6.33 42 11.05-1.7_R |  | Excavation(Rem) | 3d | 2026-09-20 A | 2026-10-14 A | B6.33 42 11.05-1.5_R SS, B6.33 42 11.05-1.7 | 100% |  | 2026-09-16 | 2026-09-19 |  | Labor [9.5 h]; Foreman [4.75 h]; Operator [9.5 h]; Surveyor [4.75 h]; Surveyor Helper [4.75 h]; Excavator (With Bucket) [4.87 h]; Water Tanker [4.87 h]; Dump Truck [4.87 h]; Plate Compactor [4.87 h]; 1.51m - 2.5m [4.01] | 3,689.22 | 3,689.22 | 0.00417736572342047 | Cons. | Z4 | Storm | Cons | CS.UNSC | GRPs | SUB.C | Rd 02 | Strm |
| B6.33 42 11.05-1.21_R |  | Sand Bedding(Rem) | 3d | 2026-09-24 A | 2026-10-14 A | B6.33 42 11.05-1.7_R FF, B6.33 42 11.05-1.21 | 100% |  | 2026-09-16 | 2026-09-19 |  | Labor [9.5 h]; Foreman [4.75 h]; Operator [18.99 h]; Surveyor [4.75 h]; Surveyor Helper [4.75 h]; Loader [4.87 h]; Water Tanker [4.87 h]; Dump Truck [4.87 h]; Plate Compactor [4.87 h]; 1.51m - 2.5m [1] | 922.88 | 922.88 | 0.00104499783653133 | Cons. | Z4 | Storm | Cons | CS.UNSC | GRPs | SUB.C | Rd 02 | Strm |
| B6.33 42 11.05-1.35_R |  | Pipe Laying(Rem) | 3d | 2026-09-28 A | 2026-10-14 A | B6.33 42 11.05-1.21_R FF, B6.33 42 11.05-1.35 | 100% |  | 2026-09-16 | 2026-09-19 |  | Labor [9.5 h]; Foreman [4.75 h]; Plumber Helper [4.75 h]; Plumber [4.75 h]; Operator [4.75 h]; Surveyor [4.75 h]; Surveyor Helper [4.75 h]; Mobile Crane [4.87 h]; 1.51m - 2.5m [9.02] | 8,301.32 | 8,301.32 | 0.0093997292833722 | Cons. | Z4 | Storm | Cons | CS.UNSC | GRPs | SUB.C | Rd 02 | Strm |
| B6.33 42 11.05-1.49_R |  | Embedment & Test(Rem) | 2.35d | 2026-10-01 A | 2026-10-21 | B6.33 42 11.05-1.35_R FF, B6.33 42 11.05-1.49 | 90% | 0.24d | 2026-09-16 | 2026-09-19 | 113.09d | Labor [18.99 h]; Foreman [9.5 h]; Plumber Helper [9.5 h]; Plumber [9.5 h]; Operator [18.99 h]; Surveyor [9.5 h]; Surveyor Helper [9.5 h]; Loader [9.74 h]; Water Tanker [9.74 h]; Dump Truck [9.74 h]; Plate Compactor [9.74 h]; Roller Compactor [9.74 h]; 1.51m - 2.5m [4.01] | 3,689.22 | 3,534.62 | 0.00417736572342047 | Cons. | Z4 | Storm | Cons | CS.UNSC | GRPs | SUB.C | Rd 02 | Strm |
| B6.33 42 11.05-1.63_R |  | Backfilling & Warrning Tape(Rem) | 2.69d | 2026-10-03 A | 2026-10-14 A | B6.33 42 11.05-1.59, B6.33 42 11.05-1.49_R SS, B6.33 42 11.05-1.63 | 100% |  | 2026-09-16 | 2026-09-20 |  | Labor [23.74 h]; Foreman [11.87 h]; Operator [47.48 h]; Surveyor [11.87 h]; Surveyor Helper [11.87 h]; Loader [12.18 h]; Water Tanker [12.18 h]; Dump Truck [12.18 h]; Plate Compactor [12.18 h]; Roller Compactor [12.18 h]; 1.51m - 2.5m [2.01] | 1,845.77 | 1,845.77 | 0.00208999567306265 | Cons. | Z4 | Storm | Cons | CS.UNSC | GRPs | SUB.C | Rd 02 | Strm |
