# DEVELOPMENT OF SUDAIR INDUSTRIAL CITY PHASE 2 - 01/11/2026.

Schedule from Primavera P6, 2026-01-06 to 2027-07-05, data date 2026-11-01, costs in KSA, A marks actual dates.
Must finish by 2027-07-05

## Calendars

- 6x10 Sudair Infra: Mon-Thu 07:00-12:00, 13:00-18:00; Fri off; Sat-Sun 07:00-12:00, 13:00-18:00. Exceptions (off unless hours are given): 2026-03-21 to 2026-03-24, 2026-05-27 to 2026-05-28, 2026-05-30 to 2026-05-31, 2026-09-23, 2027-02-22, 2027-03-09 to 2027-03-11, 2027-03-13, 2027-05-16 to 2027-05-20.
- 7x10 Sudair Infra: Mon-Sun 07:00-12:00, 13:00-18:00. Exceptions (off unless hours are given): 2026-05-27 to 2026-05-30, 2026-09-01 07:00-12:00, 13:00-18:00, 2026-09-06 07:00-12:00, 13:00-18:00, 2026-09-13 07:00-12:00, 13:00-18:00, 2026-09-20 07:00-12:00, 13:00-18:00, 2026-09-23, 2026-09-27 07:00-12:00, 13:00-18:00, 2026-10-04 07:00-12:00, 13:00-18:00, 2026-10-11 07:00-12:00, 13:00-18:00, 2026-10-18 07:00-12:00, 13:00-18:00, 2026-10-25 07:00-12:00, 13:00-18:00, 2026-11-01 07:00-12:00, 13:00-18:00, 2026-11-08 07:00-12:00, 13:00-18:00, 2026-11-15 07:00-12:00, 13:00-18:00, 2026-11-22 07:00-12:00, 13:00-18:00, 2026-11-29 07:00-12:00, 13:00-18:00, 2026-12-06 07:00-12:00, 13:00-18:00, 2026-12-13 07:00-12:00, 13:00-18:00, 2026-12-20 07:00-12:00, 13:00-18:00, 2026-12-27 07:00-12:00, 13:00-18:00, 2027-01-03 07:00-12:00, 13:00-18:00, 2027-01-10 07:00-12:00, 13:00-18:00, 2027-01-17 07:00-12:00, 13:00-18:00, 2027-01-24 07:00-12:00, 13:00-18:00, 2027-01-31 07:00-12:00, 13:00-18:00, 2027-02-07 07:00-12:00, 13:00-18:00, 2027-02-14 07:00-12:00, 13:00-18:00, 2027-02-21 07:00-12:00, 13:00-18:00, 2027-02-22, 2027-02-28 07:00-12:00, 13:00-18:00, 2027-03-07 07:00-12:00, 13:00-18:00, 2027-03-09 to 2027-03-13, 2027-03-14 07:00-12:00, 13:00-18:00, 2027-03-21 07:00-12:00, 13:00-18:00, 2027-03-28 07:00-12:00, 13:00-18:00, 2027-04-04 07:00-12:00, 13:00-18:00, 2027-04-11 07:00-12:00, 13:00-18:00, 2027-04-18 07:00-12:00, 13:00-18:00, 2027-04-25 07:00-12:00, 13:00-18:00, 2027-05-02 07:00-12:00, 13:00-18:00, 2027-05-09 07:00-12:00, 13:00-18:00, 2027-05-16 to 2027-05-20, 2027-05-23 07:00-12:00, 13:00-18:00, 2027-05-30 07:00-12:00, 13:00-18:00, 2027-06-06 07:00-12:00, 13:00-18:00, 2027-06-13 07:00-12:00, 13:00-18:00, 2027-06-20 07:00-12:00, 13:00-18:00, 2027-06-27 07:00-12:00, 13:00-18:00, 2027-07-04 07:00-12:00, 13:00-18:00.

## Resources

| Resource | Group | Rate |
| --- | --- | --- |
| SIC- Cost | material | 1 |
| Surveyor | labor |  |
| Labor | labor |  |
| Plumber | labor |  |
| Excavator | equipment |  |
| Excavator Operator | labor |  |
| Compactor | equipment |  |
| Landscape Crew | labor |  |
| Mechanical Forman | labor |  |
| Mechanical Engineer | labor |  |
| Pipe Fitter | labor |  |
| Dumper Truck | equipment |  |
| Loader | equipment |  |
| Plumbing Helper | labor |  |
| Un-Skilled Labor | labor |  |
| Skilled Labor | labor |  |
| Electrical Forman | labor |  |
| Electrical Technician | labor |  |
| Electrical Helper | labor |  |
| Supervisor | labor |  |
| Dumper Operator | labor |  |
| Sweeper Machine | equipment |  |
| Sweeper Machine Operator | labor |  |
| Pneumatic Tire Roller | equipment |  |
| Pneumatic Roller Operator | labor |  |
| Asphalt Paver | equipment |  |
| Asphalt Paver Operator | labor |  |
| Grader | equipment |  |
| Grader Operator | labor |  |
| Loader Operator | labor |  |
| Water Tanker | equipment |  |
| Water Tanker Operator | labor |  |
| Loader | equipment |  |
| Excavator | equipment |  |
| Road Milling Machine | equipment |  |
| Road Milling Machine Operator | equipment |  |
| Compactor Operator | labor |  |
| Civil Drafman | labor |  |
| Design Engineer | labor |  |
| Mechanical Drafman | labor |  |
| Electrical Drafman | labor |  |
| Project Coordinator | labor |  |
| Delivery Team | labor |  |
| Civil Engineer | labor |  |
| Civil Forman | labor |  |
| Architecture | labor |  |
| Helper | labor |  |
| Surveyor | labor |  |
| Loader Operator | labor |  |
| Grader Operator | labor |  |
| Electrical Engineer | labor |  |
| Dump Truck | equipment |  |
| Dum Truck Operator | labor |  |
| Excavator Operator | labor |  |

## Schedule

| ID | WBS | Activity | Type | Duration | Start | Finish | Predecessors | Complete | Planned start | Planned finish | Total float | Free float |
| --- | --- | --- | --- | --- | --- | --- | --- | --- | --- | --- | --- | --- |
|  | M | **Milestones** |  |  | 2026-01-06 | 2027-07-05 |  |  |  |  |  |  |
|  | 1 | **Major Milestone** |  |  | 2026-01-06 | 2027-07-05 |  |  |  |  |  |  |
| SDR-2-MILS-1000 |  | Project Start Milstone | milestone | 0d | 2026-01-06 A | 2026-01-06 A |  | 100% |  |  |  |  |
| SDR-2-MILS-1010 |  | Project Finish Milstone | milestone | 0d | 2027-07-05 | 2027-07-05 | SDR-2-CLO-AS-M-1010, SDR-2-CON-IR-ZA-2190, SDR-2-CON-IR-ZA-2510, SDR-2-CON-IR-ZA-2550, SDR-2-CON-LS-ZA-1020, SDR-2-CON-LS-ZA-1030, SDR-2-CON-LS-ZA-1040, SDR-2-CON-LS-ZA-1050, SDR-2-CON-LS-ZA-1060, SDR-2-CON-LS-ZG-1020, SDR-2-CON-LS-ZG-1030, SDR-2-CON-LS-ZG-1040, SDR-2-CON-LS-ZG-1050, SDR-2-CON-LS-ZG-1060, SDR-2-TC-SWDN-1020, SDR-2-TC-TSE-1040, SDR-2-TC-PW-1050, SDR-2-TC-EW-1060, SDR-2-CLO-TM-1000, SDR-2-CLO-DM-1000, SDR-2-CLO-DE-1000, SDR-2-CLO-RO-1000, SDR-2-CLO-HO-1000, SDR-2-MILS-1080 FF, SDR-2-MILS-1110 FF, SDR-2-CON-IR-ZA-2310 FF, SDR-2-CON-IR-ZA-2940 FF, SDR-2-CON-IR-ZA-2980 FF, SDR-2-MILS-1060 FF, SDR-2-MILS-1070 FF, SDR-2-CLO-AS-C-1010, SDR-2-CON-CC-ZA-1410, SDR-2-CON-CC-ZA-1110 |  |  |  | 0d |  |
|  | 3 | **Contractual Milestone** |  |  | 2026-04-06 | 2027-07-03 |  |  |  |  |  |  |
| SDR-2-MILS-1020 |  | Mobilization Finish Milestone | milestone | 0d | 2026-04-06 A | 2026-04-06 A | SDR-2-MOBL-1060 | 100% | 2026-02-05 | 2026-02-05 |  |  |
| SDR-2-MILS-1030 |  | Execution Plan and Baseline Submission Finish Milestone | milestone | 0d | 2026-04-06 A | 2026-04-06 A | SDR-2-PREL-1110 | 100% | 2026-02-05 | 2026-02-05 |  |  |
| SDR-2-MILS-1040 |  | Submission and approval of plans and materials Finish Milestone | milestone | 0d | 2026-07-25 A | 2026-07-25 A | SDR-2-PRO-MAL-E-1160, SDR-2-PRO-MAL-E-1200 FF, SDR-2-PRO-MSL-E-1170 FF, SDR-2-PRO-MAL-E-1170 FF | 100% | 2026-03-05 | 2026-03-05 |  |  |
| SDR-2-MILS-1060 |  | Completion of medium voltage works | milestone | 0d | 2027-02-25 | 2027-02-25 | SDR-2-CON-CC-ZA-1860, SDR-2-CON-CC-ZA-1620 FF |  |  |  | 25d | 0d |
| SDR-2-MILS-1050 |  | Completion of road works | milestone | 0d | 2027-04-27 | 2027-04-27 | SDR-2-CON-RW-ZA-1710, SDR-2-CON-RW-ZA-2410 FF, SDR-2-CON-RW-ZG-1160 FF |  |  |  | 12d |  |
| SDR-2-MILS-1070 |  | Completion of All Network work | milestone | 0d | 2027-04-27 | 2027-04-27 | SDR-2-CON-ST-ZA-4170, SDR-2-CON-ST-ZA-5670, SDR-2-CON-ST-ZA-4020 |  |  |  | 54d |  |
| SDR-2-MILS-1080 |  | Completion of finishing works in the project | milestone | 0d | 2027-07-03 | 2027-07-03 | SDR-2-CON-IR-ZA-2310, SDR-2-CON-IR-ZA-2800 |  |  |  | 2.7d |  |
|  | 2 | **Phases Milestone** |  |  | 2026-11-01 | 2027-07-05 |  |  |  |  |  |  |
| SDR-2-MILS-1090 |  | Engineering Phase Finish Milestone | milestone | 0d | 2026-11-01 | 2026-11-01 | SDR-2-ENG-APP-M-1290 |  |  |  | 75d | 0d |
| SDR-2-MILS-1100 |  | Procurment Phase Finish Milestone | milestone | 0d | 2027-01-04 | 2027-01-04 | SDR-2-PRO-ST-E-1240 |  |  |  | 25d | 0d |
| SDR-2-MILS-1110 |  | Construction Phase Finish Milestone | milestone | 0d | 2027-07-05 | 2027-07-05 | SDR-2-CON-IR-ZA-2670 FF, SDR-2-CLO-HO-1000 FF, SDR-2-CLO-HO-1000 |  |  |  | 0d |  |
|  | MB | **Mobilization** |  |  | 2026-01-06 | 2026-04-06 |  |  |  |  |  |  |
|  | 6 | **Office Site Prepare** |  |  | 2026-01-06 | 2026-01-10 |  |  |  |  |  |  |
| SDR-2-MOBL-1000 |  | Office Area Grading and Prepare |  | 4d | 2026-01-06 A | 2026-01-10 A | SDR-2-MILS-1000 | 100% |  |  |  |  |
|  | 3 | **Access Roads** |  |  | 2026-01-11 | 2026-01-14 |  |  |  |  |  |  |
| SDR-2-MOBL-1010 |  | Office Area Access Roads Prepare |  | 4d | 2026-01-11 A | 2026-01-14 A | SDR-2-MOBL-1000 | 100% |  |  |  |  |
|  | 5 | **Offices Installation** |  |  | 2026-01-15 | 2026-01-20 |  |  |  |  |  |  |
| SDR-2-MOBL-1020 |  | Offices Cabins Installation |  | 5d | 2026-01-15 A | 2026-01-20 A | SDR-2-MOBL-1010 | 100% |  |  |  |  |
|  | 10 | **Offices MEP Works** |  |  | 2026-01-15 | 2026-01-20 |  |  |  |  |  |  |
| SDR-2-MOBL-1030 |  | Office Cabins MEP Works |  | 5d | 2026-01-15 A | 2026-01-20 A | SDR-2-MOBL-1020 | 100% | 2026-01-21 | 2026-01-26 |  |  |

| ID | WBS | Activity | Duration | Start | Finish | Predecessors | Complete | Planned start | Planned finish |
| --- | --- | --- | --- | --- | --- | --- | --- | --- | --- |
|  | 4 | **Manpower Mobilization** |  | 2026-01-21 | 2026-01-25 |  |  |  |  |
| SDR-2-MOBL-1040 |  | Manpower Arrive | 4d | 2026-01-21 A | 2026-01-25 A | SDR-2-MOBL-1030 SS | 100% |  |  |
|  | 7 | **Equipment Mobilization** |  | 2026-01-26 | 2026-01-31 |  |  |  |  |
| SDR-2-MOBL-1050 |  | Equipment Arrive | 5d | 2026-01-26 A | 2026-01-31 A | SDR-2-MOBL-1040 | 100% |  |  |
|  | 1 | **Project Signage** |  | 2026-02-01 | 2026-02-05 |  |  |  |  |
| SDR-2-MOBL-1060 |  | Project Sign Installation | 5d | 2026-02-01 A | 2026-02-05 A | SDR-2-MOBL-1050 | 100% |  |  |
|  | 2 | **Preliminary Submittals** |  | 2026-01-22 | 2026-04-06 |  |  |  |  |
|  | 1 | **HSSE Plan** |  | 2026-01-22 | 2026-02-28 |  |  |  |  |
| SDR-2-PREL-1000 |  | Project HSSE Plan Submission | 3d | 2026-01-22 A | 2026-01-26 A | SDR-2-MOBL-1030, SDR-2-MOBL-1050 | 100% | 2026-02-01 | 2026-02-03 |
| SDR-2-PREL-1010 |  | Project HSSE Plan Approval | 2d | 2026-01-27 A | 2026-02-28 A | SDR-2-PREL-1000 | 100% | 2026-02-04 | 2026-02-05 |
|  | 2 | **Quality Control Plan** |  | 2026-02-01 | 2026-03-05 |  |  |  |  |
| SDR-2-PREL-1020 |  | Project Quality Plan Submission | 3d | 2026-02-01 A | 2026-02-03 A | SDR-2-PREL-1000 SS | 100% |  |  |
| SDR-2-PREL-1030 |  | Project Quality Plan Approval | 2d | 2026-02-04 A | 2026-03-05 A | SDR-2-PREL-1020 | 100% | 2026-02-04 | 2026-02-05 |
|  | 3 | **Communications Plan** |  | 2026-01-29 | 2026-02-02 |  |  |  |  |
| SDR-2-PREL-1040 |  | Project Communication Plan Submission | 3d | 2026-01-29 A | 2026-02-01 A | SDR-2-PREL-1020 SS | 100% | 2026-02-01 | 2026-02-03 |
| SDR-2-PREL-1050 |  | Project Communication Plan Approval | 2d | 2026-02-01 A | 2026-02-02 A | SDR-2-PREL-1040 | 100% | 2026-02-04 | 2026-02-05 |
|  | 4 | **Risk Managment Plan** |  | 2026-01-28 | 2026-02-07 |  |  |  |  |
| SDR-2-PREL-1070 |  | Project Risk Managment Plan Approvals | 2d | 2026-01-28 A | 2026-02-02 A | SDR-2-PREL-1060 | 100% | 2026-02-04 | 2026-02-05 |
| SDR-2-PREL-1060 |  | Project Risk Managment Plan Submission | 3d | 2026-02-01 A | 2026-02-07 A | SDR-2-PREL-1040 SS | 100% | 2026-02-01 | 2026-02-03 |
|  | 5 | **Project Execution Plan** |  | 2026-02-01 | 2026-02-07 |  |  |  |  |
| SDR-2-PREL-1080 |  | Project Execution Plan Submission | 3d | 2026-02-01 A | 2026-02-07 A | SDR-2-PREL-1060 SS | 100% | 2026-02-01 | 2026-02-03 |
| SDR-2-PREL-1090 |  | Project Execution Plan Approvals | 2d | 2026-02-07 A | 2026-02-07 A | SDR-2-PREL-1080, SDR-2-MILS-1030 FF | 100% | 2026-02-04 | 2026-02-05 |
|  | 6 | **Project Schedule** |  | 2026-01-29 | 2026-04-06 |  |  |  |  |
| SDR-2-PREL-1100 |  | Project Schedule Submission | 3d | 2026-01-29 A | 2026-02-03 A | SDR-2-PREL-1000 SS | 100% | 2026-02-01 | 2026-02-03 |
| SDR-2-PREL-1110 |  | Project Schedule Approvals | 2d | 2026-02-04 A | 2026-04-06 A | SDR-2-PREL-1100 | 100% | 2026-02-04 | 2026-02-05 |

| ID | WBS | Activity | Duration | Start | Finish | Predecessors | Complete | Planned start | Planned finish | Resources |
| --- | --- | --- | --- | --- | --- | --- | --- | --- | --- | --- |
|  | EN | **Engineering** |  | 2026-02-08 | 2026-11-12 |  |  |  |  |  |
|  | 1 | **Shop Drawings Stage** |  | 2026-02-08 | 2026-11-12 |  |  |  |  |  |
|  | 1 | **Submission** |  | 2026-02-08 | 2026-06-15 |  |  |  |  |  |
|  | 4 | **Road Works** |  | 2026-02-08 | 2026-02-18 |  |  |  |  |  |
| SDR-2-ENG-SUB-C-1000 |  | DEMOLISH WORKS OVERALL PLAN Submission | 4d | 2026-02-08 A | 2026-02-10 A | SDR-2-MILS-1000 FS+28d, SDR-2-PREL-1010, SDR-2-PREL-1030, SDR-2-PREL-1050, SDR-2-PREL-1070, SDR-2-PREL-1090, SDR-2-MILS-1020 | 100% | 2026-02-08 | 2026-02-11 | SIC- Cost [12338.8]; Civil Drafman [138.93 h]; Design Engineer [138.93 h] |
| SDR-2-ENG-SUB-C-1010 |  | ROAD ZONES LAYOUT PLAN Submission | 4d | 2026-02-11 A | 2026-02-12 A | SDR-2-MILS-1000 FS+28d | 100% | 2026-02-08 | 2026-02-11 | SIC- Cost [1.25]; Civil Drafman [138.93 h]; Design Engineer [138.93 h] |
| SDR-2-ENG-SUB-C-1020 |  | ROAD LAYOUT PLAN Submission | 4d | 2026-02-12 A | 2026-02-15 A | SDR-2-MILS-1000 FS+28d | 100% | 2026-02-08 | 2026-02-11 | SIC- Cost [1.25]; Civil Drafman [138.93 h]; Design Engineer [138.93 h] |
| SDR-2-ENG-SUB-C-1030 |  | TYPICAL ROAD CROSS SECTIONS Submission | 4d | 2026-02-12 A | 2026-02-12 A | SDR-2-MILS-1000 FS+28d | 100% | 2026-02-08 | 2026-02-11 | SIC- Cost [1.25]; Civil Drafman [138.93 h]; Design Engineer [138.93 h] |
| SDR-2-ENG-SUB-C-1040 |  | GRADING TYPICAL CROSS SECTIONS Submission | 4d | 2026-02-12 A | 2026-02-16 A | SDR-2-MILS-1000 FS+28d | 100% | 2026-02-08 | 2026-02-11 | SIC- Cost [1.25]; Civil Drafman [138.94 h]; Design Engineer [138.94 h] |
| SDR-2-ENG-SUB-C-1050 |  | ZONE A ROAD SETTING OUT PLAN Submission | 4d | 2026-02-12 A | 2026-02-16 A | SDR-2-MILS-1000 FS+28d | 100% | 2026-02-08 | 2026-02-11 | SIC- Cost [1.25]; Civil Drafman [138.93 h]; Design Engineer [138.93 h] |
| SDR-2-ENG-SUB-C-1060 |  | ZONE G ROAD SETTING OUT PLAN Submission | 4d | 2026-02-12 A | 2026-02-16 A | SDR-2-MILS-1000 FS+28d | 100% | 2026-02-08 | 2026-02-11 | SIC- Cost [1.25]; Civil Drafman [138.93 h]; Design Engineer [138.93 h] |
| SDR-2-ENG-SUB-C-1070 |  | TYPICAL PAVEMENT DETAILS Submission | 4d | 2026-02-16 A | 2026-02-17 A | SDR-2-MILS-1000 FS+28d | 100% | 2026-02-08 | 2026-02-11 | SIC- Cost [1.25]; Civil Drafman [138.93 h]; Design Engineer [138.93 h] |
| SDR-2-ENG-SUB-C-1080 |  | TYPICAL JUNCTION DETAIL LOCAL-1 & LOCAL-1 (40M ROW) Submission | 4d | 2026-02-16 A | 2026-02-17 A | SDR-2-MILS-1000 FS+28d | 100% | 2026-02-08 | 2026-02-11 | SIC- Cost [1.25]; Civil Drafman [138.93 h]; Design Engineer [138.93 h] |
| SDR-2-ENG-SUB-C-1100 |  | ROAD PROFILES (ZONE G) Submission | 4d | 2026-02-16 A | 2026-02-17 A | SDR-2-MILS-1000 FS+28d | 100% | 2026-02-08 | 2026-02-11 | SIC- Cost [1.25]; Civil Drafman [138.93 h]; Design Engineer [138.93 h] |
| SDR-2-ENG-SUB-C-1110 |  | Overall Kerbing and Pavement Layout Submission | 4d | 2026-02-16 A | 2026-02-17 A | SDR-2-MILS-1000 FS+28d | 100% | 2026-02-08 | 2026-02-11 | SIC- Cost [1.25]; Civil Drafman [138.93 h]; Design Engineer [138.93 h] |
| SDR-2-ENG-SUB-C-1090 |  | ROAD PROFILES (ZONE A) Submission | 4d | 2026-02-16 A | 2026-02-17 A | SDR-2-MILS-1000 FS+28d | 100% | 2026-02-08 | 2026-02-11 | SIC- Cost [1.25]; Civil Drafman [138.93 h]; Design Engineer [138.93 h] |
| SDR-2-ENG-SUB-C-1120 |  | Typical Concrete Kerb Details Submission | 4d | 2026-02-17 A | 2026-02-18 A | SDR-2-MILS-1000 FS+28d | 100% | 2026-02-08 | 2026-02-11 | SIC- Cost [1.25]; Civil Drafman [138.94 h]; Design Engineer [138.94 h] |
| SDR-2-ENG-SUB-C-1130 |  | Typical Pavement Details Submission | 4d | 2026-02-17 A | 2026-02-18 A | SDR-2-MILS-1000 FS+28d | 100% | 2026-02-08 | 2026-02-11 | SIC- Cost [1.25]; Civil Drafman [138.93 h]; Design Engineer [138.93 h] |
| SDR-2-ENG-SUB-C-1140 |  | Road Marking Layout Submission | 4d | 2026-02-17 A | 2026-02-18 A | SDR-2-MILS-1000 FS+28d | 100% | 2026-02-08 | 2026-02-11 | SIC- Cost [1.25]; Civil Drafman [138.93 h]; Design Engineer [138.93 h] |
| SDR-2-ENG-SUB-C-1150 |  | Road Marking Details Submission | 4d | 2026-02-17 A | 2026-02-18 A | SDR-2-MILS-1000 FS+28d | 100% | 2026-02-08 | 2026-02-11 | SIC- Cost [1.25]; Civil Drafman [138.94 h]; Design Engineer [138.94 h] |
| SDR-2-ENG-SUB-C-1160 |  | Road Marking And Signage Typical Standard Details Submission | 4d | 2026-02-17 A | 2026-02-18 A | SDR-2-MILS-1000 FS+28d | 100% | 2026-02-08 | 2026-02-11 | SIC- Cost [1.25]; Civil Drafman [138.93 h]; Design Engineer [138.93 h] |
| SDR-2-ENG-SUB-C-1170 |  | Standard Details Submission | 4d | 2026-02-17 A | 2026-02-18 A | SDR-2-MILS-1000 FS+28d | 100% | 2026-02-08 | 2026-02-11 | SIC- Cost [1.25]; Civil Drafman [138.93 h]; Design Engineer [138.93 h] |
| SDR-2-ENG-SUB-C-1180 |  | Site Safety Notice Board Submission | 4d | 2026-02-17 A | 2026-02-18 A | SDR-2-MILS-1000 FS+28d | 100% | 2026-02-08 | 2026-02-11 | SIC- Cost [1.25]; Civil Drafman [138.93 h]; Design Engineer [138.93 h] |
| SDR-2-ENG-SUB-C-1190 |  | Location Plan For Traffic Signage Submission | 4d | 2026-02-17 A | 2026-02-18 A | SDR-2-MILS-1000 FS+28d | 100% | 2026-02-08 | 2026-02-11 | SIC- Cost [1.25]; Civil Drafman [138.93 h]; Design Engineer [138.93 h] |

| ID | WBS | Activity | Duration | Start | Finish | Predecessors | Complete | Planned start | Planned finish | Resources |
| --- | --- | --- | --- | --- | --- | --- | --- | --- | --- | --- |
|  | 5 | **Storm Water Drainage Network** |  | 2026-02-12 | 2026-02-25 |  |  |  |  |  |
| SDR-2-ENG-SUB-M-1000 |  | Storm Drainage Master Plan Submission | 4d | 2026-02-12 A | 2026-02-16 A | SDR-2-MILS-1000 FS+28d | 100% | 2026-02-08 | 2026-02-11 | SIC- Cost [1.25]; Mechanical Drafman [138.93 h]; Design Engineer [138.93 h] |
| SDR-2-ENG-SUB-M-1010 |  | Storm Drainage Layout Submission | 4d | 2026-02-12 A | 2026-02-16 A | SDR-2-MILS-1000 FS+28d | 100% | 2026-02-08 | 2026-02-11 | SIC- Cost [1.25]; Mechanical Drafman [138.93 h]; Design Engineer [138.93 h] |
| SDR-2-ENG-SUB-M-1020 |  | Storm Network Profile Submission | 4d | 2026-02-16 A | 2026-02-18 A | SDR-2-MILS-1000 FS+28d | 100% | 2026-02-08 | 2026-02-11 | SIC- Cost [2.5]; Mechanical Drafman [138.93 h]; Design Engineer [138.93 h] |
| SDR-2-ENG-SUB-M-1030 |  | Storm Network Standard Details Submission | 4d | 2026-02-18 A | 2026-02-25 A | SDR-2-MILS-1000 FS+28d | 100% | 2026-02-08 | 2026-02-11 | SIC- Cost [2.5]; Mechanical Drafman [138.93 h]; Design Engineer [138.93 h] |
| SDR-2-ENG-SUB-M-1040 |  | Storm Network Section Submission | 4d | 2026-02-18 A | 2026-02-25 A | SDR-2-MILS-1000 FS+28d | 100% | 2026-02-08 | 2026-02-11 | SIC- Cost [2.5]; Mechanical Drafman [138.93 h]; Design Engineer [138.93 h] |
| SDR-2-ENG-SUB-M-1050 |  | POND A LAYOUT AND PROFILE Submission | 4d | 2026-02-18 A | 2026-02-23 A | SDR-2-MILS-1000 FS+28d | 100% | 2026-02-08 | 2026-02-11 | SIC- Cost [1.25]; Mechanical Drafman [138.93 h]; Design Engineer [138.93 h] |
| SDR-2-ENG-SUB-M-1060 |  | TYPICAL ENERGY DISSAPATION DETAILS Submission | 4d | 2026-02-23 A | 2026-02-25 A | SDR-2-MILS-1000 FS+28d | 100% | 2026-02-08 | 2026-02-11 | SIC- Cost [1.25]; Mechanical Drafman [138.93 h]; Design Engineer [138.93 h] |
| SDR-2-ENG-SUB-M-1070 |  | STORM WATER POND SIPHON PIPE DETAILS Submission | 4d | 2026-02-23 A | 2026-02-25 A | SDR-2-MILS-1000 FS+28d | 100% | 2026-02-08 | 2026-02-11 | SIC- Cost [1.25]; Mechanical Drafman [138.93 h]; Design Engineer [138.93 h] |
| SDR-2-ENG-SUB-M-1080 |  | REINFORCEMENT CONCRETE WEIR AND GABION WALL DETAILS Submission | 4d | 2026-02-23 A | 2026-02-25 A | SDR-2-MILS-1000 FS+28d | 100% | 2026-02-08 | 2026-02-11 | SIC- Cost [1.25]; Mechanical Drafman [138.93 h]; Design Engineer [138.93 h] |
| SDR-2-ENG-SUB-M-1090 |  | TYPICAL TRENCH AND PIPE BEDDING DETAILS Submission | 4d | 2026-02-23 A | 2026-02-25 A | SDR-2-MILS-1000 FS+28d | 100% | 2026-02-08 | 2026-02-11 | SIC- Cost [1.25]; Mechanical Drafman [138.93 h]; Design Engineer [138.93 h] |
| SDR-2-ENG-SUB-M-1100 |  | FLUSH AND KERB INLET MANHOLE DETAILS Submission | 4d | 2026-02-23 A | 2026-02-25 A | SDR-2-MILS-1000 FS+28d | 100% | 2026-02-08 | 2026-02-11 | SIC- Cost [1.25]; Mechanical Drafman [138.93 h]; Design Engineer [138.93 h] |
| SDR-2-ENG-SUB-M-1110 |  | BOX PIPE CONNECTION AND BOX PIPE WIDENING DETAILS Submission | 4d | 2026-02-23 A | 2026-02-25 A | SDR-2-MILS-1000 FS+28d | 100% | 2026-02-08 | 2026-02-11 | SIC- Cost [1.25]; Mechanical Drafman [138.93 h]; Design Engineer [138.93 h] |
| SDR-2-ENG-SUB-M-1120 |  | TYPICAL BOX PIPE JUNCTION DETAILS Submission | 4d | 2026-02-23 A | 2026-02-25 A | SDR-2-MILS-1000 FS+28d | 100% | 2026-02-08 | 2026-02-11 | SIC- Cost [1.25]; Mechanical Drafman [138.93 h]; Design Engineer [138.93 h] |
| SDR-2-ENG-SUB-M-1130 |  | TYPICAL JUNCTION CHAMBER REINFORCEMENT DETAILS Submission | 4d | 2026-02-23 A | 2026-02-25 A | SDR-2-MILS-1000 FS+28d | 100% | 2026-02-08 | 2026-02-11 | SIC- Cost [1.25]; Mechanical Drafman [138.93 h]; Design Engineer [138.93 h] |
| SDR-2-ENG-SUB-M-1140 |  | DEPRESSED KERB TO SWALE/MANHOLE DETAILS Submission | 4d | 2026-02-23 A | 2026-02-25 A | SDR-2-MILS-1000 FS+28d | 100% | 2026-02-08 | 2026-02-11 | SIC- Cost [1.25]; Mechanical Drafman [138.93 h]; Design Engineer [138.93 h] |
| SDR-2-ENG-SUB-M-1150 |  | BOX PIPE AND SWALE CONNECTION DETAILS Submission | 4d | 2026-02-23 A | 2026-02-25 A | SDR-2-MILS-1000 FS+28d | 100% | 2026-02-08 | 2026-02-11 | SIC- Cost [1.25]; Mechanical Drafman [138.93 h]; Design Engineer [138.93 h] |
|  | 6 | **Sewerage Network** |  | 2026-02-18 | 2026-02-25 |  |  |  |  |  |
| SDR-2-ENG-SUB-M-1160 |  | Sewage Layout Master Plan Submission | 4d | 2026-02-18 A | 2026-02-23 A | SDR-2-MILS-1000 FS+28d | 100% | 2026-02-08 | 2026-02-11 | SIC- Cost [1.25]; Mechanical Drafman [138.93 h]; Design Engineer [138.93 h] |
| SDR-2-ENG-SUB-M-1170 |  | Sewage Network Profile Submission | 4d | 2026-02-18 A | 2026-02-23 A | SDR-2-MILS-1000 FS+28d | 100% | 2026-02-08 | 2026-02-11 | SIC- Cost [1.25]; Mechanical Drafman [138.93 h]; Design Engineer [138.93 h] |
| SDR-2-ENG-SUB-M-1180 |  | Sewage Network Standard Details Submission | 4d | 2026-02-18 A | 2026-02-25 A | SDR-2-MILS-1000 FS+28d | 100% | 2026-02-08 | 2026-02-11 | SIC- Cost [2.5]; Mechanical Drafman [138.93 h]; Design Engineer [138.93 h] |
| SDR-2-ENG-SUB-M-1190 |  | Sewage Network Section Submission | 4d | 2026-02-18 A | 2026-02-25 A | SDR-2-MILS-1000 FS+28d | 100% | 2026-02-08 | 2026-02-11 | SIC- Cost [2.5]; Mechanical Drafman [138.93 h]; Design Engineer [138.93 h] |
|  | 7 | **TSE Network** |  | 2026-02-18 | 2026-02-25 |  |  |  |  |  |
| SDR-2-ENG-SUB-M-1210 |  | TSE Network Profile Submission | 4d | 2026-02-18 A | 2026-02-23 A | SDR-2-MILS-1000 FS+28d | 100% | 2026-02-08 | 2026-02-11 | SIC- Cost [1.25]; Mechanical Drafman [138.93 h]; Design Engineer [138.93 h] |
| SDR-2-ENG-SUB-M-1220 |  | TSE Network Standard Details Submission | 4d | 2026-02-18 A | 2026-02-25 A | SDR-2-MILS-1000 FS+28d | 100% | 2026-02-08 | 2026-02-11 | SIC- Cost [2.5]; Mechanical Drafman [138.93 h]; Design Engineer [138.93 h] |
| SDR-2-ENG-SUB-M-1230 |  | TSE Network Section Submission | 4d | 2026-02-18 A | 2026-02-25 A | SDR-2-MILS-1000 FS+28d | 100% | 2026-02-08 | 2026-02-11 | SIC- Cost [2.5]; Mechanical Drafman [138.93 h]; Design Engineer [138.93 h] |
| SDR-2-ENG-SUB-M-1200 |  | TSE Layout Master Plan Submission | 4d | 2026-02-23 A | 2026-02-25 A | SDR-2-MILS-1000 FS+28d | 100% | 2026-02-08 | 2026-02-11 | SIC- Cost [1.25]; Mechanical Drafman [138.93 h]; Design Engineer [138.93 h] |

| ID | WBS | Activity | Duration | Start | Finish | Predecessors | Complete | Planned start | Planned finish | Resources |
| --- | --- | --- | --- | --- | --- | --- | --- | --- | --- | --- |
|  | 8 | **Portable Water** |  | 2026-02-18 | 2026-02-25 |  |  |  |  |  |
| SDR-2-ENG-SUB-M-1240 |  | Potable Water Piping Layout Master Plan Submission | 4d | 2026-02-18 A | 2026-02-23 A | SDR-2-MILS-1000 FS+28d | 100% | 2026-02-08 | 2026-02-11 | SIC- Cost [1.25]; Mechanical Drafman [138.93 h]; Design Engineer [138.93 h] |
| SDR-2-ENG-SUB-M-1250 |  | Potable Water Piping Layout Submission | 4d | 2026-02-18 A | 2026-02-23 A | SDR-2-MILS-1000 FS+28d | 100% | 2026-02-08 | 2026-02-11 | SIC- Cost [1.25]; Mechanical Drafman [138.93 h]; Design Engineer [138.93 h] |
| SDR-2-ENG-SUB-M-1260 |  | Potable Water Standard Details Submission | 4d | 2026-02-18 A | 2026-02-25 A | SDR-2-MILS-1000 FS+28d | 100% | 2026-02-08 | 2026-02-11 | SIC- Cost [2.5]; Mechanical Drafman [138.93 h]; Design Engineer [138.93 h] |
| SDR-2-ENG-SUB-M-1270 |  | Potable Water Section Submission | 4d | 2026-02-18 A | 2026-02-23 A | SDR-2-MILS-1000 FS+28d | 100% | 2026-02-08 | 2026-02-11 | SIC- Cost [1.25]; Mechanical Drafman [138.93 h]; Design Engineer [138.93 h] |
|  | 9 | **Electrical** |  | 2026-02-16 | 2026-06-15 |  |  |  |  |  |
| SDR-2-ENG-SUB-E-1000 |  | MV Network Layout Submission | 4d | 2026-02-16 A | 2026-06-15 A | SDR-2-MILS-1000 FS+28d | 100% | 2026-02-08 | 2026-02-11 | SIC- Cost [1.25]; Electrical Drafman [138.93 h]; Design Engineer [138.93 h] |
| SDR-2-ENG-SUB-E-1080 |  | Street Lighting Layout Submission | 4d | 2026-02-16 A | 2026-02-17 A | SDR-2-MILS-1000 FS+28d | 100% | 2026-02-08 | 2026-02-11 | SIC- Cost [1.25]; Electrical Drafman [138.93 h]; Design Engineer [138.93 h] |
| SDR-2-ENG-SUB-E-1090 |  | Single Line Diagram for Street Lighting Submission | 4d | 2026-02-16 A | 2026-02-17 A | SDR-2-MILS-1000 FS+28d | 100% | 2026-02-08 | 2026-02-11 | SIC- Cost [1.25]; Electrical Drafman [138.93 h]; Design Engineer [138.93 h] |
| SDR-2-ENG-SUB-E-1170 |  | Telecom Overall Layout Submission | 4d | 2026-02-16 A | 2026-02-17 A | SDR-2-MILS-1000 FS+28d | 100% | 2026-02-08 | 2026-02-11 | SIC- Cost [1.25]; Electrical Drafman [138.93 h]; Design Engineer [138.93 h] |
| SDR-2-ENG-SUB-E-1010 |  | MV Single Line Diagram Submission | 4d | 2026-02-17 A | 2026-06-15 A | SDR-2-MILS-1000 FS+28d | 100% | 2026-02-08 | 2026-02-11 | SIC- Cost [1.25]; Electrical Drafman [138.93 h]; Design Engineer [138.93 h] |
| SDR-2-ENG-SUB-E-1100 |  | Voltage Drop Calculations Submission | 4d | 2026-02-17 A | 2026-02-18 A | SDR-2-MILS-1000 FS+28d | 100% | 2026-02-08 | 2026-02-11 | SIC- Cost [1.25]; Electrical Drafman [138.93 h]; Design Engineer [138.93 h] |
| SDR-2-ENG-SUB-E-1180 |  | Typical Trenches Detail Submission | 4d | 2026-02-17 A | 2026-02-18 A | SDR-2-MILS-1000 FS+28d | 100% | 2026-02-08 | 2026-02-11 | SIC- Cost [1.25]; Electrical Drafman [138.93 h]; Design Engineer [138.93 h] |
| SDR-2-ENG-SUB-E-1020 |  | Design Of MV Loops Submission | 4d | 2026-02-18 A | 2026-06-15 A | SDR-2-MILS-1000 FS+28d | 100% | 2026-02-08 | 2026-02-11 | SIC- Cost [1.25]; Electrical Drafman [138.93 h]; Design Engineer [138.93 h] |
| SDR-2-ENG-SUB-E-1030 |  | Loads For Plots Submission | 4d | 2026-02-18 A | 2026-06-15 A | SDR-2-MILS-1000 FS+28d | 100% | 2026-02-08 | 2026-02-11 | SIC- Cost [1.25]; Electrical Drafman [138.93 h]; Design Engineer [138.93 h] |
| SDR-2-ENG-SUB-E-1040 |  | Distribution Substation Submission | 4d | 2026-02-18 A | 2026-06-15 A | SDR-2-MILS-1000 FS+28d | 100% | 2026-02-08 | 2026-02-11 | SIC- Cost [1.25]; Electrical Drafman [138.93 h]; Design Engineer [138.93 h] |
| SDR-2-ENG-SUB-E-1050 |  | MV Trench Configuration Details Submission | 4d | 2026-02-18 A | 2026-06-15 A | SDR-2-MILS-1000 FS+28d | 100% | 2026-02-08 | 2026-02-11 | SIC- Cost [1.25]; Electrical Drafman [138.93 h]; Design Engineer [138.93 h] |
| SDR-2-ENG-SUB-E-1060 |  | MV Electrical Duct Banks Details Submission | 4d | 2026-02-18 A | 2026-06-15 A | SDR-2-MILS-1000 FS+28d | 100% | 2026-02-08 | 2026-02-11 | SIC- Cost [1.25]; Electrical Drafman [138.93 h]; Design Engineer [138.93 h] |
| SDR-2-ENG-SUB-E-1070 |  | Distribution Transformers Submission | 4d | 2026-02-18 A | 2026-06-15 A | SDR-2-MILS-1000 FS+28d | 100% | 2026-02-08 | 2026-02-11 | SIC- Cost [1.25]; Electrical Drafman [138.93 h]; Design Engineer [138.93 h] |
| SDR-2-ENG-SUB-E-1110 |  | Construction Details Lighting Poles Submission | 4d | 2026-02-18 A | 2026-02-23 A | SDR-2-MILS-1000 FS+28d | 100% | 2026-02-08 | 2026-02-11 | SIC- Cost [1.25]; Electrical Drafman [138.93 h]; Design Engineer [138.93 h] |
| SDR-2-ENG-SUB-E-1120 |  | Base Plate Construction Details Submission | 4d | 2026-02-18 A | 2026-02-23 A | SDR-2-MILS-1000 FS+28d | 100% | 2026-02-08 | 2026-02-11 | SIC- Cost [1.25]; Electrical Drafman [138.93 h]; Design Engineer [138.93 h] |
| SDR-2-ENG-SUB-E-1190 |  | Typical Trenches Crossing Detail Submission | 4d | 2026-02-18 A | 2026-02-23 A | SDR-2-MILS-1000 FS+28d | 100% | 2026-02-08 | 2026-02-11 | SIC- Cost [1.25]; Electrical Drafman [138.93 h]; Design Engineer [138.93 h] |
| SDR-2-ENG-SUB-E-1200 |  | Manholes,Hand-Holes Details Submission | 4d | 2026-02-18 A | 2026-02-23 A | SDR-2-MILS-1000 FS+28d | 100% | 2026-02-08 | 2026-02-11 | SIC- Cost [1.25]; Electrical Drafman [138.93 h]; Design Engineer [138.93 h] |
| SDR-2-ENG-SUB-E-1210 |  | Typical Details Of Pock Out Ducts Submission | 4d | 2026-02-18 A | 2026-02-23 A | SDR-2-MILS-1000 FS+28d | 100% | 2026-02-08 | 2026-02-11 | SIC- Cost [1.25]; Electrical Drafman [138.93 h]; Design Engineer [138.93 h] |
| SDR-2-ENG-SUB-E-1130 |  | Lighting Pole Identification Submission | 4d | 2026-02-23 A | 2026-02-25 A | SDR-2-MILS-1000 FS+28d | 100% | 2026-02-08 | 2026-02-11 | SIC- Cost [1.25]; Electrical Drafman [138.93 h]; Design Engineer [138.93 h] |
| SDR-2-ENG-SUB-E-1140 |  | Typical Feeder Pillar and Timer Switch Details Submission | 4d | 2026-02-23 A | 2026-02-25 A | SDR-2-MILS-1000 FS+28d | 100% | 2026-02-08 | 2026-02-11 | SIC- Cost [1.25]; Electrical Drafman [138.93 h]; Design Engineer [138.93 h] |
| SDR-2-ENG-SUB-E-1150 |  | Public Lighting Draw-Pit Construction Details Submission | 4d | 2026-02-23 A | 2026-02-25 A | SDR-2-MILS-1000 FS+28d | 100% | 2026-02-08 | 2026-02-11 | SIC- Cost [1.25]; Electrical Drafman [138.93 h]; Design Engineer [138.93 h] |
| SDR-2-ENG-SUB-E-1160 |  | Concrete Earth Pit Construction Details Submission | 4d | 2026-02-23 A | 2026-02-25 A | SDR-2-MILS-1000 FS+28d | 100% | 2026-02-08 | 2026-02-11 | SIC- Cost [1.25]; Electrical Drafman [138.93 h]; Design Engineer [138.93 h] |

| ID | WBS | Activity | Duration | Start | Finish | Predecessors | Complete | Planned start | Planned finish | Resources |
| --- | --- | --- | --- | --- | --- | --- | --- | --- | --- | --- |
|  | 11 | **CCTV** |  | 2026-02-16 | 2026-06-01 |  |  |  |  |  |
| SDR-2-ENG-SUB-E-1220 |  | CCTV Overall Layout Submission | 4d | 2026-02-16 A | 2026-06-01 A | SDR-2-MILS-1000 FS+28d | 100% | 2026-02-08 | 2026-02-11 | SIC- Cost [1.25]; Electrical Drafman [138.93 h]; Design Engineer [138.93 h] |
| SDR-2-ENG-SUB-E-1230 |  | CCTV Control Room Layout Submission | 4d | 2026-02-16 A | 2026-06-01 A | SDR-2-MILS-1000 FS+28d | 100% | 2026-02-08 | 2026-02-11 | SIC- Cost [1.25]; Electrical Drafman [138.93 h]; Design Engineer [138.93 h] |
| SDR-2-ENG-SUB-E-1240 |  | CCTV System Schematic Drawing Submission | 4d | 2026-02-16 A | 2026-06-01 A | SDR-2-MILS-1000 FS+28d | 100% | 2026-02-08 | 2026-02-11 | SIC- Cost [1.25]; Electrical Drafman [138.93 h]; Design Engineer [138.93 h] |
| SDR-2-ENG-SUB-E-1250 |  | CCTV System 7 MTR Pole Installation Detail Submission | 4d | 2026-02-16 A | 2026-06-01 A | SDR-2-MILS-1000 FS+28d | 100% | 2026-02-08 | 2026-02-11 | SIC- Cost [1.25]; Electrical Drafman [138.93 h]; Design Engineer [138.93 h] |
| SDR-2-ENG-SUB-E-1260 |  | CCTV System 25 MTR Pole Installation Detail Submission | 4d | 2026-02-16 A | 2026-06-01 A | SDR-2-MILS-1000 FS+28d | 100% | 2026-02-08 | 2026-02-11 | SIC- Cost [1.25]; Electrical Drafman [138.93 h]; Design Engineer [138.93 h] |
| SDR-2-ENG-SUB-E-1270 |  | CCTV System 35 MTR Pole Installation Detail Submission | 4d | 2026-02-16 A | 2026-06-01 A | SDR-2-MILS-1000 FS+28d | 100% | 2026-02-08 | 2026-02-11 | SIC- Cost [1.25]; Electrical Drafman [138.93 h]; Design Engineer [138.93 h] |
| SDR-2-ENG-SUB-E-1280 |  | Typical Solar Panel Installation Detail Submission | 4d | 2026-02-16 A | 2026-06-01 A | SDR-2-MILS-1000 FS+28d | 100% | 2026-02-08 | 2026-02-11 | SIC- Cost [1.25]; Electrical Drafman [138.93 h]; Design Engineer [138.93 h] |
|  | 10 | **Landscape & Irrigation Works** |  | 2026-02-18 | 2026-04-17 |  |  |  |  |  |
| SDR-2-ENG-SUB-M-1280 |  | Irrigation Layout Master Plan Submission | 4d | 2026-02-18 A | 2026-02-23 A | SDR-2-MILS-1000 FS+36d | 100% | 2026-02-17 | 2026-02-21 | SIC- Cost [1.25]; Mechanical Drafman [138.93 h]; Design Engineer [138.93 h] |
| SDR-2-ENG-SUB-M-1290 |  | Irrigation Network Profile Submission | 4d | 2026-02-23 A | 2026-02-25 A | SDR-2-MILS-1000 FS+36d | 100% | 2026-02-17 | 2026-02-21 | SIC- Cost [1.25]; Mechanical Drafman [138.93 h]; Design Engineer [138.93 h] |
| SDR-2-ENG-SUB-M-1300 |  | Irrigation Network Standard Details Submission | 4d | 2026-02-23 A | 2026-02-24 A | SDR-2-MILS-1000 FS+36d | 100% | 2026-02-17 | 2026-02-21 | SIC- Cost [1]; Mechanical Drafman [138.93 h]; Design Engineer [138.93 h] |
| SDR-2-ENG-SUB-M-1310 |  | Irrigation Network Section Submission | 4d | 2026-02-23 A | 2026-02-24 A | SDR-2-MILS-1000 FS+36d | 100% | 2026-02-17 | 2026-02-21 | SIC- Cost [1]; Mechanical Drafman [138.93 h]; Design Engineer [138.93 h] |
| SDR-2-ENG-SUB-M-1320 |  | Landscape Layout Master Plan Submission | 4d | 2026-02-23 A | 2026-04-17 A | SDR-2-MILS-1000 FS+36d | 100% | 2026-02-17 | 2026-02-21 | SIC- Cost [1]; Mechanical Drafman [138.93 h]; Design Engineer [138.93 h] |
|  | 4 | **Approvals** |  | 2026-02-11 | 2026-11-12 |  |  |  |  |  |
|  | 4 | **Road Works** |  | 2026-02-11 | 2026-02-26 |  |  |  |  |  |
| SDR-2-ENG-APP-C-1000 |  | DEMOLISH WORKS OVERALL PLAN Approval | 11d | 2026-02-11 A | 2026-02-16 A | SDR-2-ENG-SUB-C-1000 | 100% | 2026-02-12 | 2026-02-24 | SIC- Cost [3.75]; Project Coordinator [416.8 h] |
| SDR-2-ENG-APP-C-1010 |  | ROAD ZONES LAYOUT PLAN Approval | 11d | 2026-02-12 A | 2026-02-17 A | SDR-2-ENG-SUB-C-1010 | 100% | 2026-02-12 | 2026-02-24 | SIC- Cost [3.75]; Project Coordinator [416.8 h] |
| SDR-2-ENG-APP-C-1030 |  | TYPICAL ROAD CROSS SECTIONS Approval | 11d | 2026-02-12 A | 2026-02-18 A | SDR-2-ENG-SUB-C-1030 | 100% | 2026-02-12 | 2026-02-24 | SIC- Cost [3.75]; Project Coordinator [416.8 h] |
| SDR-2-ENG-APP-C-1020 |  | ROAD LAYOUT PLAN Approval | 11d | 2026-02-15 A | 2026-02-19 A | SDR-2-ENG-SUB-C-1020 | 100% | 2026-02-12 | 2026-02-24 | SIC- Cost [3.75]; Project Coordinator [416.8 h] |
| SDR-2-ENG-APP-C-1040 |  | GRADING TYPICAL CROSS SECTIONS Approval | 11d | 2026-02-16 A | 2026-02-23 A | SDR-2-ENG-SUB-C-1040 | 100% | 2026-02-12 | 2026-02-24 | SIC- Cost [3.75]; Project Coordinator [416.8 h] |
| SDR-2-ENG-APP-C-1050 |  | ZONE A ROAD SETTING OUT PLAN Approval | 11d | 2026-02-16 A | 2026-02-23 A | SDR-2-ENG-SUB-C-1050 | 100% | 2026-02-12 | 2026-02-24 | SIC- Cost [3.75]; Project Coordinator [416.8 h] |
| SDR-2-ENG-APP-C-1060 |  | ZONE G ROAD SETTING OUT PLAN Approval | 11d | 2026-02-16 A | 2026-02-23 A | SDR-2-ENG-SUB-C-1060 | 100% | 2026-02-12 | 2026-02-24 | SIC- Cost [3.75]; Project Coordinator [416.8 h] |
| SDR-2-ENG-APP-C-1070 |  | TYPICAL PAVEMENT DETAILS Approval | 11d | 2026-02-17 A | 2026-02-25 A | SDR-2-ENG-SUB-C-1070 | 100% | 2026-02-12 | 2026-02-24 | SIC- Cost [3.75]; Project Coordinator [416.8 h] |
| SDR-2-ENG-APP-C-1080 |  | TYPICAL JUNCTION DETAIL LOCAL-1 & LOCAL-1 (40M ROW) Approval | 11d | 2026-02-17 A | 2026-02-25 A | SDR-2-ENG-SUB-C-1080 | 100% | 2026-02-12 | 2026-02-24 | SIC- Cost [3.75]; Project Coordinator [416.8 h] |
| SDR-2-ENG-APP-C-1090 |  | ROAD PROFILES (ZONE A) Approval | 11d | 2026-02-17 A | 2026-02-25 A | SDR-2-ENG-SUB-C-1090 | 100% | 2026-02-12 | 2026-02-24 | SIC- Cost [3.75]; Project Coordinator [416.8 h] |
| SDR-2-ENG-APP-C-1100 |  | ROAD PROFILES (ZONE G) Approval | 11d | 2026-02-17 A | 2026-02-25 A | SDR-2-ENG-SUB-C-1100 | 100% | 2026-02-12 | 2026-02-24 | SIC- Cost [3.75]; Project Coordinator [416.8 h] |
| SDR-2-ENG-APP-C-1110 |  | Overall Kerbing and Pavement Layout Approval | 11d | 2026-02-17 A | 2026-02-25 A | SDR-2-ENG-SUB-C-1110 | 100% | 2026-02-12 | 2026-02-24 | SIC- Cost [3.75]; Project Coordinator [416.8 h] |
| SDR-2-ENG-APP-C-1120 |  | Typical Concrete Kerb Details Approval | 11d | 2026-02-18 A | 2026-02-26 A | SDR-2-ENG-SUB-C-1120 | 100% | 2026-02-12 | 2026-02-24 | SIC- Cost [3.75]; Project Coordinator [416.8 h] |
| SDR-2-ENG-APP-C-1130 |  | Typical Pavement Details Approval | 11d | 2026-02-18 A | 2026-02-26 A | SDR-2-ENG-SUB-C-1130 | 100% | 2026-02-12 | 2026-02-24 | SIC- Cost [3.75]; Project Coordinator [416.8 h] |
| SDR-2-ENG-APP-C-1140 |  | Road Marking Layout Approval | 11d | 2026-02-18 A | 2026-02-26 A | SDR-2-ENG-SUB-C-1140 | 100% | 2026-02-12 | 2026-02-24 | SIC- Cost [3.75]; Project Coordinator [416.8 h] |
| SDR-2-ENG-APP-C-1150 |  | Road Marking Details Approval | 11d | 2026-02-18 A | 2026-02-26 A | SDR-2-ENG-SUB-C-1150 | 100% | 2026-02-12 | 2026-02-24 | SIC- Cost [3.75]; Project Coordinator [416.8 h] |
| SDR-2-ENG-APP-C-1160 |  | Road Marking And Signage Typical Standard Details Approval | 11d | 2026-02-18 A | 2026-02-26 A | SDR-2-ENG-SUB-C-1160 | 100% | 2026-02-12 | 2026-02-24 | SIC- Cost [3.75]; Project Coordinator [416.8 h] |
| SDR-2-ENG-APP-C-1170 |  | Standard Details Approval | 11d | 2026-02-18 A | 2026-02-26 A | SDR-2-ENG-SUB-C-1170 | 100% | 2026-02-12 | 2026-02-24 | SIC- Cost [3.75]; Project Coordinator [416.8 h] |
| SDR-2-ENG-APP-C-1180 |  | Site Safety Notice Board Approval | 11d | 2026-02-18 A | 2026-02-26 A | SDR-2-ENG-SUB-C-1180 | 100% | 2026-02-12 | 2026-02-24 | SIC- Cost [3.75]; Project Coordinator [416.8 h] |
| SDR-2-ENG-APP-C-1190 |  | Location Plan For Traffic Signage Approval | 11d | 2026-02-18 A | 2026-02-26 A | SDR-2-ENG-SUB-C-1190 | 100% | 2026-02-12 | 2026-02-24 | SIC- Cost [3.75]; Project Coordinator [416.8 h] |

| ID | WBS | Activity | Duration | Start | Finish | Predecessors | Complete | Planned start | Planned finish | Resources |
| --- | --- | --- | --- | --- | --- | --- | --- | --- | --- | --- |
|  | 5 | **Storm Water Drainage Network** |  | 2026-02-16 | 2026-05-24 |  |  |  |  |  |
| SDR-2-ENG-APP-M-1000 |  | Storm Drainage Master Plan Approval | 11d | 2026-02-16 A | 2026-05-10 A | SDR-2-ENG-SUB-M-1000 | 100% | 2026-02-12 | 2026-02-24 | SIC- Cost [3.75]; Project Coordinator [416.8 h] |
| SDR-2-ENG-APP-M-1010 |  | Storm Drainage Layout Approval | 11d | 2026-02-16 A | 2026-05-10 A | SDR-2-ENG-SUB-M-1010 | 100% | 2026-02-12 | 2026-02-24 | SIC- Cost [3.75]; Project Coordinator [416.8 h] |
| SDR-2-ENG-APP-M-1020 |  | Storm Network Profile Approval | 11d | 2026-02-18 A | 2026-05-24 A | SDR-2-ENG-SUB-M-1020 | 100% | 2026-02-12 | 2026-02-24 | SIC- Cost [3.75]; Project Coordinator [416.8 h] |
| SDR-2-ENG-APP-M-1050 |  | POND A LAYOUT AND PROFILE Approval | 11d | 2026-02-23 A | 2026-05-17 A | SDR-2-ENG-SUB-M-1050 | 100% | 2026-02-12 | 2026-02-24 | SIC- Cost [4]; Project Coordinator [416.8 h] |
| SDR-2-ENG-APP-M-1030 |  | Storm Network Standard Details Approval | 11d | 2026-02-25 A | 2026-03-04 A | SDR-2-ENG-SUB-M-1030 | 100% | 2026-02-12 | 2026-02-24 | SIC- Cost [3.75]; Project Coordinator [416.8 h] |
| SDR-2-ENG-APP-M-1040 |  | Storm Network Section Approval | 11d | 2026-02-25 A | 2026-05-24 A | SDR-2-ENG-SUB-M-1040 | 100% | 2026-02-12 | 2026-02-24 | SIC- Cost [3.75]; Project Coordinator [416.8 h] |
| SDR-2-ENG-APP-M-1060 |  | TYPICAL ENERGY DISSAPATION DETAILS Approval | 11d | 2026-02-25 A | 2026-05-24 A | SDR-2-ENG-SUB-M-1060 | 100% | 2026-02-12 | 2026-02-24 | SIC- Cost [3.75]; Project Coordinator [416.8 h] |
| SDR-2-ENG-APP-M-1070 |  | STORM WATER POND SIPHON PIPE DETAILS SApproval | 11d | 2026-02-25 A | 2026-05-24 A | SDR-2-ENG-SUB-M-1070 | 100% | 2026-02-12 | 2026-02-24 | SIC- Cost [3.75]; Project Coordinator [416.8 h] |
| SDR-2-ENG-APP-M-1080 |  | REINFORCEMENT CONCRETE WEIR AND GABION WALL DETAILS Approval | 11d | 2026-02-25 A | 2026-05-24 A | SDR-2-ENG-SUB-M-1080 | 100% | 2026-02-12 | 2026-02-24 | SIC- Cost [3.75]; Project Coordinator [416.8 h] |
| SDR-2-ENG-APP-M-1090 |  | TYPICAL TRENCH AND PIPE BEDDING DETAILS Approval | 11d | 2026-02-25 A | 2026-04-06 A | SDR-2-ENG-SUB-M-1090 | 100% | 2026-02-12 | 2026-02-24 | SIC- Cost [3.75]; Project Coordinator [416.8 h] |
| SDR-2-ENG-APP-M-1100 |  | FLUSH AND KERB INLET MANHOLE DETAILS Approval | 11d | 2026-02-25 A | 2026-04-06 A | SDR-2-ENG-SUB-M-1100 | 100% | 2026-02-12 | 2026-02-24 | SIC- Cost [3.75]; Project Coordinator [416.8 h] |
| SDR-2-ENG-APP-M-1110 |  | BOX PIPE CONNECTION AND BOX PIPE WIDENING DETAILS Approval | 11d | 2026-02-25 A | 2026-05-24 A | SDR-2-ENG-SUB-M-1110 | 100% | 2026-02-12 | 2026-02-24 | SIC- Cost [3.75]; Project Coordinator [416.8 h] |
| SDR-2-ENG-APP-M-1120 |  | TYPICAL BOX PIPE JUNCTION DETAILS Approval | 11d | 2026-02-25 A | 2026-05-24 A | SDR-2-ENG-SUB-M-1120 | 100% | 2026-02-12 | 2026-02-24 | SIC- Cost [3.75]; Project Coordinator [416.8 h] |
| SDR-2-ENG-APP-M-1130 |  | TYPICAL JUNCTION CHAMBER REINFORCEMENT DETAILS Approval | 11d | 2026-02-25 A | 2026-05-24 A | SDR-2-ENG-SUB-M-1130 | 100% | 2026-02-12 | 2026-02-24 | SIC- Cost [3.75]; Project Coordinator [416.8 h] |
| SDR-2-ENG-APP-M-1140 |  | DEPRESSED KERB TO SWALE/MANHOLE DETAILS Approval | 11d | 2026-02-25 A | 2026-05-24 A | SDR-2-ENG-SUB-M-1140 | 100% | 2026-02-12 | 2026-02-24 | SIC- Cost [3.75]; Project Coordinator [416.8 h] |
| SDR-2-ENG-APP-M-1150 |  | BOX PIPE AND SWALE CONNECTION DETAILS Approval | 11d | 2026-02-25 A | 2026-05-24 A | SDR-2-ENG-SUB-M-1150 | 100% | 2026-02-12 | 2026-02-24 | SIC- Cost [3.75]; Project Coordinator [416.8 h] |
|  | 6 | **Sewerage Network** |  | 2026-02-23 | 2026-05-20 |  |  |  |  |  |
| SDR-2-ENG-APP-M-1160 |  | Sewage Layout Master Plan Approval | 11d | 2026-02-23 A | 2026-05-10 A | SDR-2-ENG-SUB-M-1160 | 100% | 2026-02-12 | 2026-02-24 | SIC- Cost [3.75]; Project Coordinator [416.8 h] |
| SDR-2-ENG-APP-M-1170 |  | Sewage Network Profile Approval | 11d | 2026-02-23 A | 2026-05-20 A | SDR-2-ENG-SUB-M-1170 | 100% | 2026-02-12 | 2026-02-24 | SIC- Cost [3.75]; Project Coordinator [416.8 h] |
| SDR-2-ENG-APP-M-1180 |  | Sewage Network Standard Details Approval | 11d | 2026-02-25 A | 2026-05-20 A | SDR-2-ENG-SUB-M-1180 | 100% | 2026-02-12 | 2026-02-24 | SIC- Cost [3.75]; Project Coordinator [416.8 h] |
| SDR-2-ENG-APP-M-1190 |  | Sewage Network Section Approval | 11d | 2026-02-25 A | 2026-05-20 A | SDR-2-ENG-SUB-M-1190 | 100% | 2026-02-12 | 2026-02-24 | SIC- Cost [3.75]; Project Coordinator [416.8 h] |
|  | 7 | **TSE Network** |  | 2026-02-23 | 2026-04-25 |  |  |  |  |  |
| SDR-2-ENG-APP-M-1210 |  | TSE Network Profile Approval | 11d | 2026-02-23 A | 2026-04-16 A | SDR-2-ENG-SUB-M-1210 | 100% | 2026-02-12 | 2026-02-24 | SIC- Cost [4]; Project Coordinator [416.8 h] |
| SDR-2-ENG-APP-M-1220 |  | TSE Network Standard Details Approval | 11d | 2026-02-25 A | 2026-04-23 A | SDR-2-ENG-SUB-M-1220 | 100% | 2026-02-12 | 2026-02-24 | SIC- Cost [4]; Project Coordinator [416.8 h] |
| SDR-2-ENG-APP-M-1230 |  | TSE Network Section Approval | 11d | 2026-02-25 A | 2026-04-25 A | SDR-2-ENG-SUB-M-1230 | 100% | 2026-02-12 | 2026-02-24 | SIC- Cost [4]; Project Coordinator [416.8 h] |
| SDR-2-ENG-APP-M-1200 |  | TSE Layout Master Plan Approval | 11d | 2026-02-25 A | 2026-04-14 A | SDR-2-ENG-SUB-M-1200 | 100% | 2026-02-12 | 2026-02-24 | SIC- Cost [4]; Project Coordinator [416.8 h] |

| ID | WBS | Activity | Duration | Start | Finish | Predecessors | Complete | Planned start | Planned finish | Total float | Free float | Resources |
| --- | --- | --- | --- | --- | --- | --- | --- | --- | --- | --- | --- | --- |
|  | 8 | **Portable Water** |  | 2026-02-23 | 2026-05-20 |  |  |  |  |  |  |  |
| SDR-2-ENG-APP-M-1240 |  | Potable Water Piping Layout Master Plan Approval | 11d | 2026-02-23 A | 2026-04-29 A | SDR-2-ENG-SUB-M-1240 | 100% | 2026-02-12 | 2026-02-24 |  |  | SIC- Cost [3.75]; Project Coordinator [416.8 h] |
| SDR-2-ENG-APP-M-1250 |  | Potable Water Piping Layout Approval | 11d | 2026-02-23 A | 2026-04-29 A | SDR-2-ENG-SUB-M-1250 | 100% | 2026-02-12 | 2026-02-24 |  |  | SIC- Cost [3.75]; Project Coordinator [416.8 h] |
| SDR-2-ENG-APP-M-1270 |  | Potable Water Section Approval | 11d | 2026-02-23 A | 2026-05-20 A | SDR-2-ENG-SUB-M-1270 | 100% | 2026-02-12 | 2026-02-24 |  |  | SIC- Cost [3.75]; Project Coordinator [416.8 h] |
| SDR-2-ENG-APP-M-1260 |  | Potable Water Standard Details Approval | 11d | 2026-02-25 A | 2026-05-20 A | SDR-2-ENG-SUB-M-1260 | 100% | 2026-02-12 | 2026-02-24 |  |  | SIC- Cost [3.75]; Project Coordinator [416.8 h] |
|  | 9 | **Electrical** |  | 2026-02-17 | 2026-11-12 |  |  |  |  |  |  |  |
| SDR-2-ENG-APP-E-1080 |  | Street Lighting Layout Approval | 11d | 2026-02-17 A | 2026-03-05 A | SDR-2-ENG-SUB-E-1080 | 100% | 2026-02-12 | 2026-02-24 |  |  | SIC- Cost [3.75]; Project Coordinator [416.8 h] |
| SDR-2-ENG-APP-E-1090 |  | Single Line Diagram for Street Lighting Approval | 11d | 2026-02-17 A | 2026-04-22 A | SDR-2-ENG-SUB-E-1090 | 100% | 2026-02-12 | 2026-02-24 |  |  | SIC- Cost [3.75]; Project Coordinator [416.8 h] |
| SDR-2-ENG-APP-E-1170 |  | Telecom Overall Layout Approval | 11d | 2026-02-17 A | 2026-04-26 A | SDR-2-ENG-SUB-E-1170 | 100% | 2026-02-12 | 2026-02-24 |  |  | SIC- Cost [3.75]; Project Coordinator [416.8 h] |
| SDR-2-ENG-APP-E-1100 |  | Voltage Drop Calculations Approval | 11d | 2026-02-18 A | 2026-03-05 A | SDR-2-ENG-SUB-E-1100 | 100% | 2026-02-12 | 2026-02-24 |  |  | SIC- Cost [3.75]; Project Coordinator [416.8 h] |
| SDR-2-ENG-APP-E-1180 |  | Typical Trenches Detail Approval | 11d | 2026-02-18 A | 2026-04-20 A | SDR-2-ENG-SUB-E-1180 | 100% | 2026-02-12 | 2026-02-24 |  |  | SIC- Cost [3.75]; Project Coordinator [416.8 h] |
| SDR-2-ENG-APP-E-1190 |  | Typical Trenches Crossing Detail Approval | 11d | 2026-02-23 A | 2026-04-26 A | SDR-2-ENG-SUB-E-1190 | 100% | 2026-02-12 | 2026-02-24 |  |  | SIC- Cost [3.75]; Project Coordinator [416.8 h] |
| SDR-2-ENG-APP-E-1200 |  | Manholes,Hand-Holes Details Approval | 11d | 2026-02-23 A | 2026-05-12 A | SDR-2-ENG-SUB-E-1200 | 100% | 2026-02-12 | 2026-02-24 |  |  | SIC- Cost [3.75]; Project Coordinator [416.8 h] |
| SDR-2-ENG-APP-E-1210 |  | Typical Details Of Pock Out Ducts Approval | 11d | 2026-02-23 A | 2026-05-13 A | SDR-2-ENG-SUB-E-1210 | 100% | 2026-02-12 | 2026-02-24 |  |  | SIC- Cost [3.75]; Project Coordinator [416.8 h] |
| SDR-2-ENG-APP-E-1110 |  | Construction Details Lighting Poles Approval | 11d | 2026-02-23 A | 2026-03-02 A | SDR-2-ENG-SUB-E-1110 | 100% | 2026-02-12 | 2026-02-24 |  |  | SIC- Cost [3.75]; Project Coordinator [416.8 h] |
| SDR-2-ENG-APP-E-1120 |  | Base Plate Construction Details Approval | 11d | 2026-02-23 A | 2026-03-02 A | SDR-2-ENG-SUB-E-1120 | 100% | 2026-02-12 | 2026-02-24 |  |  | SIC- Cost [3.75]; Project Coordinator [416.8 h] |
| SDR-2-ENG-APP-E-1130 |  | Lighting Pole Identification Approval | 11d | 2026-02-25 A | 2026-03-04 A | SDR-2-ENG-SUB-E-1130 | 100% | 2026-02-12 | 2026-02-24 |  |  | SIC- Cost [3.75]; Project Coordinator [416.8 h] |
| SDR-2-ENG-APP-E-1140 |  | Typical Feeder Pillar and Timer Switch Details Approval | 11d | 2026-02-25 A | 2026-03-04 A | SDR-2-ENG-SUB-E-1140 | 100% | 2026-02-12 | 2026-02-24 |  |  | SIC- Cost [3.75]; Project Coordinator [416.8 h] |
| SDR-2-ENG-APP-E-1150 |  | Public Lighting Draw-Pit Construction Details Approval | 11d | 2026-02-25 A | 2026-03-04 A | SDR-2-ENG-SUB-E-1150 | 100% | 2026-02-12 | 2026-02-24 |  |  | SIC- Cost [3.75]; Project Coordinator [416.8 h] |
| SDR-2-ENG-APP-E-1160 |  | Concrete Earth Pit Construction Details Approval | 11d | 2026-02-25 A | 2026-03-04 A | SDR-2-ENG-SUB-E-1160 | 100% | 2026-02-12 | 2026-02-24 |  |  | SIC- Cost [3.75]; Project Coordinator [416.8 h] |
| SDR-2-ENG-APP-E-1000 |  | MV Network Layout Approval | 11d | 2026-11-01 | 2026-11-12 | SDR-2-ENG-SUB-E-1000 |  |  |  | 4d | 0d | SIC- Cost [3.75]; Project Coordinator [416.8 h] |
| SDR-2-ENG-APP-E-1010 |  | MV Single Line Diagram Approval | 11d | 2026-11-01 | 2026-11-12 | SDR-2-ENG-SUB-E-1010 |  |  |  | 4d | 0d | SIC- Cost [3.75]; Project Coordinator [416.8 h] |
| SDR-2-ENG-APP-E-1020 |  | Design Of MV Loops Approval | 11d | 2026-11-01 | 2026-11-12 | SDR-2-ENG-SUB-E-1020 |  |  |  | 4d | 0d | SIC- Cost [3.75]; Project Coordinator [416.8 h] |
| SDR-2-ENG-APP-E-1030 |  | Loads For Plots Approval | 11d | 2026-11-01 | 2026-11-12 | SDR-2-ENG-SUB-E-1030 |  |  |  | 4d | 0d | SIC- Cost [3.75]; Project Coordinator [416.8 h] |
| SDR-2-ENG-APP-E-1040 |  | Distribution Substation Approval | 11d | 2026-11-01 | 2026-11-12 | SDR-2-ENG-SUB-E-1040 |  |  |  | 3d | 0d | SIC- Cost [3.75]; Project Coordinator [416.8 h] |
| SDR-2-ENG-APP-E-1050 |  | MV Trench Configuration Details Approval | 11d | 2026-11-01 | 2026-11-12 | SDR-2-ENG-SUB-E-1050 |  |  |  | 4d | 0d | SIC- Cost [3.75]; Project Coordinator [416.8 h] |
| SDR-2-ENG-APP-E-1060 |  | MV Electrical Duct Banks Details Approval | 11d | 2026-11-01 | 2026-11-12 | SDR-2-ENG-SUB-E-1060 |  |  |  | 4d | 0d | SIC- Cost [3.75]; Project Coordinator [416.8 h] |
| SDR-2-ENG-APP-E-1070 |  | Distribution Transformers Approval | 11d | 2026-11-01 | 2026-11-12 | SDR-2-ENG-SUB-E-1070 |  |  |  | 4d | 0d | SIC- Cost [3.75]; Project Coordinator [416.8 h] |

| ID | WBS | Activity | Duration | Start | Finish | Predecessors | Complete | Planned start | Planned finish | Total float | Free float | Resources |
| --- | --- | --- | --- | --- | --- | --- | --- | --- | --- | --- | --- | --- |
|  | 11 | **CCTV** |  | 2026-06-11 | 2026-11-12 |  |  |  |  |  |  |  |
| SDR-2-ENG-APP-E-1250 |  | CCTV System 7 MTR Pole Installation Detail Approval | 11d | 2026-06-11 A | 2026-06-15 A | SDR-2-ENG-SUB-E-1250 | 100% | 2026-02-12 | 2026-02-24 |  |  | SIC- Cost [3.75]; Project Coordinator [416.8 h] |
| SDR-2-ENG-APP-E-1260 |  | CCTV System 25 MTR Pole Installation Detail Approval | 11d | 2026-06-11 A | 2026-06-15 A | SDR-2-ENG-SUB-E-1260 | 100% | 2026-02-12 | 2026-02-24 |  |  | SIC- Cost [3.75]; Project Coordinator [416.8 h] |
| SDR-2-ENG-APP-E-1270 |  | CCTV System 35 MTR Pole Installation Detail Approval | 11d | 2026-06-11 A | 2026-06-15 A | SDR-2-ENG-SUB-E-1270 | 100% | 2026-02-12 | 2026-02-24 |  |  | SIC- Cost [3.75]; Project Coordinator [416.8 h] |
| SDR-2-ENG-APP-E-1220 |  | CCTV Overall Layout Approval | 11d | 2026-06-15 A | 2026-06-28 A | SDR-2-ENG-SUB-E-1220 | 100% | 2026-02-12 | 2026-02-24 |  |  | SIC- Cost [3.75]; Project Coordinator [416.8 h] |
| SDR-2-ENG-APP-E-1230 |  | CCTV Control Room Layout Approval | 11d | 2026-06-15 A | 2026-08-05 A | SDR-2-ENG-SUB-E-1230 | 100% | 2026-02-12 | 2026-02-24 |  |  | SIC- Cost [3.75]; Project Coordinator [416.8 h] |
| SDR-2-ENG-APP-E-1240 |  | CCTV System Schematic Drawing Approval | 11d | 2026-06-15 A | 2026-08-05 A | SDR-2-ENG-SUB-E-1240 | 100% | 2026-02-12 | 2026-02-24 |  |  | SIC- Cost [3.75]; Project Coordinator [416.8 h] |
| SDR-2-ENG-APP-E-1280 |  | Typical Solar Panel Installation Detail Approval | 11d | 2026-11-01 | 2026-11-12 | SDR-2-ENG-SUB-E-1280 |  |  |  | 4d | 0d | SIC- Cost [3.75]; Project Coordinator [416.8 h] |
|  | 10 | **Landscape & Irrigation Works** |  | 2026-02-23 | 2026-06-08 |  |  |  |  |  |  |  |
| SDR-2-ENG-APP-M-1280 |  | Irrigation Layout Master Plan Approval | 11d | 2026-02-23 A | 2026-04-28 A | SDR-2-ENG-SUB-M-1280 | 100% | 2026-02-22 | 2026-03-05 |  |  | SIC- Cost [4]; Project Coordinator [416.8 h] |
| SDR-2-ENG-APP-M-1300 |  | Irrigation Network Standard Details Approval | 11d | 2026-02-24 A | 2026-04-28 A | SDR-2-ENG-SUB-M-1300 | 100% | 2026-02-22 | 2026-03-05 |  |  | SIC- Cost [4]; Project Coordinator [416.8 h] |
| SDR-2-ENG-APP-M-1310 |  | Irrigation Network Section Approval | 11d | 2026-02-24 A | 2026-06-08 A | SDR-2-ENG-SUB-M-1310 | 100% | 2026-02-22 | 2026-03-05 |  |  | SIC- Cost [4]; Project Coordinator [416.8 h] |
| SDR-2-ENG-APP-M-1290 |  | Irrigation Network Profile Approval | 11d | 2026-02-25 A | 2026-04-28 A | SDR-2-ENG-SUB-M-1290 | 100% | 2026-02-22 | 2026-03-05 |  |  | SIC- Cost [4]; Project Coordinator [416.8 h] |
| SDR-2-ENG-APP-M-1320 |  | Landscape Layout Master Plan Approval | 11d | 2026-04-17 A | 2026-05-20 A | SDR-2-ENG-SUB-M-1320 | 100% | 2026-02-22 | 2026-03-05 |  |  | SIC- Cost [4]; Project Coordinator [416.8 h] |
|  | 3 | **Materials** |  | 2026-02-09 | 2026-11-03 |  |  |  |  |  |  |  |
|  | 5 | **Materials Submission** |  | 2026-02-09 | 2026-05-05 |  |  |  |  |  |  |  |
|  | 2 | **Short Lead Items** |  | 2026-02-09 | 2026-05-05 |  |  |  |  |  |  |  |
|  | 2 | **Civil** |  | 2026-02-09 | 2026-02-26 |  |  |  |  |  |  |  |
| SDR-2-PRO-MSS-C-1000 |  | Earth works material submission | 2d | 2026-02-09 A | 2026-02-10 A | SDR-2-ENG-APP-C-1020, SDR-2-ENG-APP-C-1000, SDR-2-ENG-APP-C-1010, SDR-2-ENG-APP-C-1050, SDR-2-ENG-APP-C-1060, SDR-2-ENG-APP-C-1090, SDR-2-ENG-APP-C-1100, SDR-2-ENG-APP-C-1170, SDR-2-ENG-APP-C-1180 | 100% | 2026-02-25 | 2026-02-26 |  |  | SIC- Cost [2.5] |
| SDR-2-PRO-MSS-C-1010 |  | Ready mix concrete submission | 2d | 2026-02-11 A | 2026-02-12 A | SDR-2-ENG-APP-C-1120 | 100% | 2026-02-25 | 2026-02-26 |  |  | SIC- Cost [2.5] |
| SDR-2-PRO-MSS-C-1040 |  | Kerbstone submission | 2d | 2026-02-11 A | 2026-02-12 A | SDR-2-ENG-APP-C-1110, SDR-2-ENG-APP-M-1140 | 100% | 2026-02-25 | 2026-02-26 |  |  | SIC- Cost [2.5] |
| SDR-2-PRO-MSS-C-1020 |  | Asphalt Mix submission | 2d | 2026-02-14 A | 2026-02-15 A | SDR-2-ENG-APP-C-1020 | 100% | 2026-02-25 | 2026-02-26 |  |  | SIC- Cost [2.5] |
| SDR-2-PRO-MSS-C-1030 |  | Road Marking submission | 2d | 2026-02-16 A | 2026-02-17 A | SDR-2-ENG-APP-C-1140, SDR-2-ENG-APP-C-1150, SDR-2-ENG-APP-C-1160 | 100% | 2026-02-25 | 2026-02-26 |  |  | SIC- Cost [2.5] |
| SDR-2-PRO-MSS-C-1050 |  | Interlock Tiles submission | 2d | 2026-02-16 A | 2026-02-18 A | SDR-2-ENG-APP-C-1070, SDR-2-ENG-APP-C-1130 | 100% | 2026-02-25 | 2026-02-26 |  |  | SIC- Cost [2.5] |
| SDR-2-PRO-MSS-C-1060 |  | Traffic Signage submission | 2d | 2026-02-19 A | 2026-02-23 A | SDR-2-ENG-APP-C-1190 | 100% | 2026-02-25 | 2026-02-26 |  |  | SIC- Cost [2.5] |
| SDR-2-PRO-MSS-C-1070 |  | Construction material submission | 2d | 2026-02-19 A | 2026-02-23 A | SDR-2-ENG-APP-C-1080, SDR-2-ENG-APP-M-1080 | 100% | 2026-02-25 | 2026-02-26 |  |  | SIC- Cost [2.5] |
| SDR-2-PRO-MSS-C-1090 |  | Protection Bollards for CCTV Pole submission | 2d | 2026-02-19 A | 2026-02-24 A | SDR-2-ENG-APP-E-1250 | 100% | 2026-02-25 | 2026-02-26 |  |  | SIC- Cost [2.5] |
| SDR-2-PRO-MSS-C-1100 |  | Protection (Guard rail) for Fire hydrant submission | 2d | 2026-02-19 A | 2026-02-24 A | SDR-2-PREL-1100, SDR-2-ENG-APP-E-1240, SDR-2-PRO-MSS-C-1090 SS | 100% | 2026-02-25 | 2026-02-26 |  |  | SIC- Cost [2.5] |
| SDR-2-PRO-MSS-C-1080 |  | Fence for Electrical works submission | 2d | 2026-02-23 A | 2026-02-26 A | SDR-2-PREL-1100, SDR-2-ENG-APP-E-1150, SDR-2-PRO-MSS-C-1070 SS | 100% | 2026-02-25 | 2026-02-26 |  |  | SIC- Cost [2.5] |

| ID | WBS | Activity | Duration | Start | Finish | Predecessors | Complete | Planned start | Planned finish | Resources |
| --- | --- | --- | --- | --- | --- | --- | --- | --- | --- | --- |
|  | 4 | **Electrical** |  | 2026-02-09 | 2026-02-15 |  |  |  |  |  |
| SDR-2-PRO-MSS-E-1000 |  | Termination Kits & Joints submission | 2d | 2026-02-09 A | 2026-02-10 A | SDR-2-ENG-APP-E-1080 | 100% | 2026-02-25 | 2026-02-26 | SIC- Cost [2.5] |
| SDR-2-PRO-MSS-E-1010 |  | UPVC Ducts & HDPE Ducts for Telecom network submission | 2d | 2026-02-11 A | 2026-02-12 A | SDR-2-ENG-APP-E-1010 SS | 100% | 2026-02-25 | 2026-02-26 | SIC- Cost [2.5] |
| SDR-2-PRO-MSS-E-1020 |  | Grounding System submission | 2d | 2026-02-14 A | 2026-02-15 A | SDR-2-ENG-APP-E-1000 SS | 100% | 2026-02-25 | 2026-02-26 | SIC- Cost [2.5] |
|  | 5 | **CCTV** |  | 2026-02-16 | 2026-05-05 |  |  |  |  |  |
| SDR-2-PRO-MSS-E-1030 |  | PECD Ducts for CCTV network submission | 2d | 2026-02-16 A | 2026-05-05 A | SDR-2-ENG-APP-E-1240 | 100% | 2026-02-25 | 2026-02-26 | SIC- Cost [2.5] |
|  | 1 | **Long Lead Items** |  | 2026-02-09 | 2026-04-21 |  |  |  |  |  |
|  | 2 | **Mechanical** |  | 2026-02-09 | 2026-02-25 |  |  |  |  |  |
| SDR-2-PRO-MSL-M-1000 |  | GRP Pipes & UPVC Pipes &Fittings submission | 2d | 2026-02-09 A | 2026-02-10 A | SDR-2-ENG-APP-M-1000, SDR-2-ENG-APP-C-1030, SDR-2-ENG-APP-C-1040, SDR-2-ENG-APP-M-1020, SDR-2-ENG-APP-M-1030, SDR-2-ENG-APP-M-1050, SDR-2-ENG-APP-M-1070, SDR-2-ENG-APP-M-1160, SDR-2-ENG-APP-M-1170, SDR-2-ENG-APP-M-1180, SDR-2-ENG-APP-M-1190, SDR-2-ENG-APP-M-1200, SDR-2-ENG-APP-M-1210, SDR-2-ENG-APP-M-1220, SDR-2-ENG-APP-M-1230 | 100% | 2026-02-25 | 2026-02-26 | SIC- Cost [2.5] |
| SDR-2-PRO-MSL-M-1010 |  | HDPE Pipes & Fittings submission | 2d | 2026-02-11 A | 2026-02-12 A | SDR-2-ENG-APP-M-1000, SDR-2-ENG-APP-M-1110, SDR-2-ENG-APP-M-1120, SDR-2-ENG-APP-M-1150, SDR-2-ENG-APP-M-1240, SDR-2-ENG-APP-M-1250, SDR-2-ENG-APP-M-1260, SDR-2-ENG-APP-M-1270, SDR-2-ENG-APP-M-1280 SS, SDR-2-ENG-APP-M-1300 SS, SDR-2-ENG-APP-M-1310 SS, SDR-2-ENG-APP-M-1320 SS | 100% | 2026-02-25 | 2026-02-26 | SIC- Cost [2.5] |
| SDR-2-PRO-MSL-M-1020 |  | Valves submission | 2d | 2026-02-11 A | 2026-02-12 A | SDR-2-ENG-APP-M-1040 | 100% | 2026-02-25 | 2026-02-26 | SIC- Cost [2.5] |
| SDR-2-PRO-MSL-M-1030 |  | Manhole submission | 2d | 2026-02-14 A | 2026-02-15 A | SDR-2-ENG-APP-M-1100 | 100% | 2026-02-25 | 2026-02-26 | SIC- Cost [2.5] |
| SDR-2-PRO-MSL-M-1040 |  | Catch Basin submission | 2d | 2026-02-16 A | 2026-02-17 A | SDR-2-ENG-APP-M-1130 | 100% | 2026-02-25 | 2026-02-26 | SIC- Cost [2.5] |
| SDR-2-PRO-MSL-M-1050 |  | Manhole, Catch basin and Valve box Cover submission | 2d | 2026-02-18 A | 2026-02-21 A | SDR-2-ENG-APP-M-1100 | 100% | 2026-02-25 | 2026-02-26 | SIC- Cost [2.5] |
| SDR-2-PRO-MSL-M-1060 |  | Fire Hydrant submission | 2d | 2026-02-21 A | 2026-02-25 A | SDR-2-ENG-APP-M-1060 | 100% | 2026-02-25 | 2026-02-26 | SIC- Cost [2.5] |
| SDR-2-PRO-MSL-M-1070 |  | Valve of Fire Hydrant submission | 2d | 2026-02-21 A | 2026-02-25 A | SDR-2-ENG-APP-M-1090 | 100% | 2026-02-25 | 2026-02-26 | SIC- Cost [2.5] |
|  | 3 | **Electrical** |  | 2026-02-09 | 2026-04-21 |  |  |  |  |  |
| SDR-2-PRO-MSL-E-1000 |  | MV Cables submission | 2d | 2026-02-09 A | 2026-02-10 A | SDR-2-ENG-APP-E-1000 SS, SDR-2-ENG-APP-E-1020 SS, SDR-2-ENG-APP-E-1050 SS | 100% | 2026-02-25 | 2026-02-26 | SIC- Cost [2.5] |
| SDR-2-PRO-MSL-E-1010 |  | LV Cables submission | 2d | 2026-02-11 A | 2026-02-12 A | SDR-2-ENG-APP-E-1100, SDR-2-ENG-APP-E-1160, SDR-2-ENG-APP-E-1170, SDR-2-ENG-APP-E-1190, SDR-2-ENG-APP-E-1210, SDR-2-ENG-APP-E-1040 SS, SDR-2-ENG-APP-E-1030 SS | 100% | 2026-02-25 | 2026-02-26 | SIC- Cost [2.5] |
| SDR-2-PRO-MSL-E-1020 |  | Street Lighting Poles submission | 2d | 2026-02-11 A | 2026-02-12 A | SDR-2-ENG-APP-E-1110 | 100% | 2026-02-25 | 2026-02-26 | SIC- Cost [2.5] |
| SDR-2-PRO-MSL-E-1030 |  | Street Lighting Fixtures submission | 2d | 2026-02-11 A | 2026-02-12 A | SDR-2-ENG-APP-E-1080, SDR-2-ENG-APP-E-1090, SDR-2-ENG-APP-E-1130 | 100% | 2026-02-25 | 2026-02-26 | SIC- Cost [2.5] |
| SDR-2-PRO-MSL-E-1040 |  | DrawPits for Lighting submission | 2d | 2026-02-11 A | 2026-02-12 A | SDR-2-ENG-APP-E-1080 | 100% | 2026-02-25 | 2026-02-26 | SIC- Cost [2.5] |
| SDR-2-PRO-MSL-E-1050 |  | Concrete Manholes & DrawPits for Telecom Network submission | 2d | 2026-02-14 A | 2026-02-15 A | SDR-2-ENG-APP-E-1180, SDR-2-ENG-APP-E-1200 | 100% | 2026-02-25 | 2026-02-26 | SIC- Cost [2.5] |
| SDR-2-PRO-MSL-E-1180 |  | CCTV Wireless P2P bridges submission | 2d | 2026-02-15 A | 2026-04-21 A | SDR-2-ENG-APP-E-1250 | 100% | 2026-02-25 | 2026-02-26 | SIC- Cost [2.5] |
| SDR-2-PRO-MSL-E-1060 |  | Switchgears - (RMUs) submission | 2d | 2026-02-16 A | 2026-02-17 A | SDR-2-ENG-APP-E-1040 SS | 100% | 2026-02-25 | 2026-02-26 | SIC- Cost [2.5] |
| SDR-2-PRO-MSL-E-1070 |  | Unit Substation submission | 2d | 2026-02-16 A | 2026-02-17 A | SDR-2-ENG-APP-E-1040 SS, SDR-2-ENG-APP-E-1070 SS | 100% | 2026-02-25 | 2026-02-26 | SIC- Cost [2.5] |
| SDR-2-PRO-MSL-E-1080 |  | Lighting Panels submission | 2d | 2026-02-16 A | 2026-02-17 A | SDR-2-ENG-APP-E-1080 | 100% | 2026-02-25 | 2026-02-26 | SIC- Cost [2.5] |
| SDR-2-PRO-MSL-E-1090 |  | KWH Meter with mounting frame submission | 2d | 2026-02-16 A | 2026-02-17 A | SDR-2-ENG-APP-E-1120 | 100% | 2026-02-25 | 2026-02-26 | SIC- Cost [2.5] |
| SDR-2-PRO-MSL-E-1100 |  | Main Feeder Pillar submission | 2d | 2026-02-16 A | 2026-02-17 A | SDR-2-ENG-APP-E-1140 | 100% | 2026-02-25 | 2026-02-26 | SIC- Cost [2.5] |
| SDR-2-PRO-MSL-E-1190 |  | CCTV UPS submission | 2d | 2026-02-17 A | 2026-04-21 A | SDR-2-ENG-APP-E-1220 | 100% | 2026-02-25 | 2026-02-26 | SIC- Cost [2.5] |
| SDR-2-PRO-MSL-E-1110 |  | CCTV Poles including all hardwares submission | 2d | 2026-02-18 A | 2026-04-21 A | SDR-2-ENG-APP-E-1260 | 100% | 2026-02-25 | 2026-02-26 | SIC- Cost [2.5] |
| SDR-2-PRO-MSL-E-1120 |  | CCTV Cables "Power" submission | 2d | 2026-02-18 A | 2026-04-21 A | SDR-2-ENG-APP-E-1220, SDR-2-ENG-APP-E-1270, SDR-2-ENG-APP-E-1060 SS | 100% | 2026-02-25 | 2026-02-26 | SIC- Cost [2.5] |
| SDR-2-PRO-MSL-E-1130 |  | CCTV Cables "CAT6" submission | 2d | 2026-02-18 A | 2026-04-21 A | SDR-2-ENG-APP-E-1230 | 100% | 2026-02-25 | 2026-02-26 | SIC- Cost [2.5] |
| SDR-2-PRO-MSL-E-1200 |  | CCTV Solar System submission | 2d | 2026-02-19 A | 2026-04-21 A | SDR-2-ENG-APP-E-1280 SS | 100% | 2026-02-25 | 2026-02-26 | SIC- Cost [2.5] |
| SDR-2-PRO-MSL-E-1140 |  | Racks and Patch panels submission | 2d | 2026-02-21 A | 2026-04-21 A | SDR-2-ENG-APP-E-1280 SS | 100% | 2026-02-25 | 2026-02-26 | SIC- Cost [2.5] |
| SDR-2-PRO-MSL-E-1150 |  | CCTV System,Servers & WorkStations submission | 2d | 2026-02-21 A | 2026-04-21 A | SDR-2-ENG-APP-E-1230 | 100% | 2026-02-25 | 2026-02-26 | SIC- Cost [2.5] |
| SDR-2-PRO-MSL-E-1160 |  | Professional 55" Video wall at control room submission | 2d | 2026-02-21 A | 2026-04-21 A | SDR-2-ENG-APP-E-1140 | 100% | 2026-02-25 | 2026-02-26 | SIC- Cost [2.5] |
| SDR-2-PRO-MSL-E-1170 |  | CCTV Switches submission | 3d | 2026-02-21 A | 2026-04-21 A | SDR-2-ENG-APP-E-1220 | 100% | 2026-02-25 | 2026-02-28 | SIC- Cost [3.12] |

| ID | WBS | Activity | Duration | Start | Finish | Predecessors | Complete | Planned start | Planned finish | Total float | Free float | Resources |
| --- | --- | --- | --- | --- | --- | --- | --- | --- | --- | --- | --- | --- |
|  | 6 | **Materials Approval** |  | 2026-02-09 | 2026-11-03 |  |  |  |  |  |  |  |
|  | 2 | **Short Lead Items** |  | 2026-02-09 | 2026-11-03 |  |  |  |  |  |  |  |
|  | 1 | **Civil** |  | 2026-02-09 | 2026-11-03 |  |  |  |  |  |  |  |
| SDR-2-PRO-MAS-C-1000 |  | Earth works material Approve | 3d | 2026-02-09 A | 2026-03-12 A | SDR-2-PRO-MSS-C-1000 | 100% | 2026-02-28 | 2026-03-02 |  |  | SIC- Cost [3.75] |
| SDR-2-PRO-MAS-C-1010 |  | Ready mix concrete Approve | 3d | 2026-02-14 A | 2026-05-31 A | SDR-2-PRO-MSS-C-1010 | 100% | 2026-02-28 | 2026-03-02 |  |  | SIC- Cost [3.75] |
| SDR-2-PRO-MAS-C-1040 |  | Kerbstone Approve | 3d | 2026-02-14 A | 2026-04-01 A | SDR-2-PRO-MSS-C-1040 | 100% | 2026-02-28 | 2026-03-02 |  |  | SIC- Cost [3.75] |
| SDR-2-PRO-MAS-C-1020 |  | Asphalt Mix Approve | 3d | 2026-02-16 A | 2026-06-09 A | SDR-2-PRO-MSS-C-1020, SDR-2-PRO-MAS-C-1000 | 100% | 2026-03-03 | 2026-03-05 |  |  | SIC- Cost [3.75] |
| SDR-2-PRO-MAS-C-1050 |  | Interlock Tiles Approve | 3d | 2026-02-19 A | 2026-04-01 A | SDR-2-PRO-MSS-C-1050 | 100% | 2026-02-28 | 2026-03-02 |  |  | SIC- Cost [3.75] |
| SDR-2-PRO-MAS-C-1070 |  | Construction material Approve | 3d | 2026-02-23 A | 2026-06-08 A | SDR-2-PRO-MSS-C-1070 | 100% | 2026-02-28 | 2026-03-02 |  |  | SIC- Cost [3.75] |
| SDR-2-PRO-MAS-C-1090 |  | Protection Bollards for CCTV Pole Approve | 3d | 2026-02-24 A | 2026-06-02 A | SDR-2-PRO-MSS-C-1090 | 100% | 2026-02-28 | 2026-03-02 |  |  | SIC- Cost [3.75] |
| SDR-2-PRO-MAS-C-1100 |  | Protection (Guard rail) for Fire hydrant Approve | 3d | 2026-02-24 A | 2026-06-02 A | SDR-2-PRO-MSS-C-1100 | 100% | 2026-02-28 | 2026-03-02 |  |  | SIC- Cost [3.75] |
| SDR-2-PRO-MAS-C-1080 |  | Fence for Electrical works Approve | 3d | 2026-02-27 A | 2026-06-01 A | SDR-2-PRO-MSS-C-1080 | 100% | 2026-02-28 | 2026-03-02 |  |  | SIC- Cost [3.75] |
| SDR-2-PRO-MAS-C-1030 |  | Road Marking Approve | 3d | 2026-11-01 | 2026-11-03 | SDR-2-PRO-MSS-C-1030 |  |  |  | 4d | 0d | SIC- Cost [3.75] |
| SDR-2-PRO-MAS-C-1060 |  | Traffic Signage Approve | 3d | 2026-11-01 | 2026-11-03 | SDR-2-PRO-MSS-C-1060 |  |  |  | 4d | 0d | SIC- Cost [3.75] |
|  | 3 | **Electrical** |  | 2026-02-11 | 2026-06-01 |  |  |  |  |  |  |  |
| SDR-2-PRO-MAS-E-1000 |  | Termination Kits & Joints Approve | 3d | 2026-02-11 A | 2026-05-13 A | SDR-2-PRO-MSS-E-1000 | 100% | 2026-02-28 | 2026-03-02 |  |  | SIC- Cost [3.75] |
| SDR-2-PRO-MAS-E-1010 |  | UPVC Ducts & HDPE Ducts for Telecom network Approve | 3d | 2026-02-14 A | 2026-04-05 A | SDR-2-PRO-MSS-E-1010 | 100% | 2026-02-28 | 2026-03-02 |  |  | SIC- Cost [3.75] |
| SDR-2-PRO-MAS-E-1020 |  | Grounding System Approve | 3d | 2026-02-16 A | 2026-04-18 A | SDR-2-PRO-MSS-E-1020 | 100% | 2026-02-28 | 2026-03-02 |  |  | SIC- Cost [3.75] |
| SDR-2-PRO-MAS-E-1030 |  | PECD Ducts for CCTV network Approve | 3d | 2026-02-18 A | 2026-06-01 A | SDR-2-PRO-MSS-E-1030 | 100% | 2026-02-28 | 2026-03-02 |  |  | SIC- Cost [3.75] |
|  | 1 | **Long Lead Items** |  | 2026-02-11 | 2026-05-21 |  |  |  |  |  |  |  |
|  | 2 | **Mechanical** |  | 2026-02-11 | 2026-03-01 |  |  |  |  |  |  |  |
| SDR-2-PRO-MAL-M-1000 |  | GRP Pipes & UPVC Pipes & Fittings Approve | 3d | 2026-02-11 A | 2026-02-14 A | SDR-2-PRO-MSL-M-1000 | 100% | 2026-02-28 | 2026-03-02 |  |  | SIC- Cost [3.75] |
| SDR-2-PRO-MAL-M-1010 |  | HDPE Pipes & Fittings Approve | 3d | 2026-02-14 A | 2026-02-16 A | SDR-2-PRO-MSL-M-1010 | 100% | 2026-02-28 | 2026-03-02 |  |  | SIC- Cost [3.75] |
| SDR-2-PRO-MAL-M-1020 |  | Valves Approve | 3d | 2026-02-14 A | 2026-02-16 A | SDR-2-PRO-MSL-M-1020 | 100% | 2026-02-28 | 2026-03-02 |  |  | SIC- Cost [3.75] |
| SDR-2-PRO-MAL-M-1030 |  | Manhole Approve | 3d | 2026-02-16 A | 2026-02-19 A | SDR-2-PRO-MSL-M-1030, SDR-2-PRO-MAL-M-1000 | 100% | 2026-03-03 | 2026-03-05 |  |  | SIC- Cost [3.75] |
| SDR-2-PRO-MAL-M-1040 |  | Catch Basin Approve | 3d | 2026-02-18 A | 2026-02-24 A | SDR-2-PRO-MSL-M-1040 | 100% | 2026-02-28 | 2026-03-02 |  |  | SIC- Cost [3.75] |
| SDR-2-PRO-MAL-M-1050 |  | Manhole, Catch basin and Valve box Cover Approve | 3d | 2026-02-21 A | 2026-02-27 A | SDR-2-PRO-MSL-M-1050 | 100% | 2026-02-28 | 2026-03-02 |  |  | SIC- Cost [3.75] |
| SDR-2-PRO-MAL-M-1060 |  | Fire Hydrant Approve | 3d | 2026-02-26 A | 2026-03-01 A | SDR-2-PRO-MSL-M-1060 | 100% | 2026-02-28 | 2026-03-02 |  |  | SIC- Cost [3.75] |
| SDR-2-PRO-MAL-M-1070 |  | Valve of Fire Hydrant Approve | 3d | 2026-02-26 A | 2026-03-01 A | SDR-2-PRO-MSL-M-1070 | 100% | 2026-02-28 | 2026-03-02 |  |  | SIC- Cost [3.75] |

| ID | WBS | Activity | Duration | Start | Finish | Predecessors | Complete | Planned start | Planned finish | Total float | Free float | Resources |
| --- | --- | --- | --- | --- | --- | --- | --- | --- | --- | --- | --- | --- |
|  | 3 | **Electrical** |  | 2026-02-11 | 2026-05-21 |  |  |  |  |  |  |  |
| SDR-2-PRO-MAL-E-1000 |  | MV Cables Approve | 3d | 2026-02-11 A | 2026-02-14 A | SDR-2-PRO-MSL-E-1000 | 100% | 2026-02-28 | 2026-03-02 |  |  | SIC- Cost [3.75] |
| SDR-2-PRO-MAL-E-1010 |  | LV Cables Approve | 3d | 2026-02-14 A | 2026-02-16 A | SDR-2-PRO-MSL-E-1010 | 100% | 2026-02-28 | 2026-03-02 |  |  | SIC- Cost [3.75] |
| SDR-2-PRO-MAL-E-1020 |  | Street Lighting Poles Approve | 3d | 2026-02-14 A | 2026-04-20 A | SDR-2-PRO-MSL-E-1020 | 100% | 2026-02-28 | 2026-03-02 |  |  | SIC- Cost [3.75] |
| SDR-2-PRO-MAL-E-1030 |  | Street Lighting Fixtures Approve | 3d | 2026-02-14 A | 2026-04-20 A | SDR-2-PRO-MSL-E-1030 | 100% | 2026-02-28 | 2026-03-02 |  |  | SIC- Cost [3.75] |
| SDR-2-PRO-MAL-E-1040 |  | DrawPits for Lighting Approve | 3d | 2026-02-14 A | 2026-04-20 A | SDR-2-PRO-MSL-E-1040 | 100% | 2026-02-28 | 2026-03-02 |  |  | SIC- Cost [3.75] |
| SDR-2-PRO-MAL-E-1050 |  | Concrete Manholes & DrawPits for Telecom Network Approve | 3d | 2026-02-16 A | 2026-05-12 A | SDR-2-PRO-MSL-E-1050 | 100% | 2026-02-28 | 2026-03-02 |  |  | SIC- Cost [3.75] |
| SDR-2-PRO-MAL-E-1060 |  | Switchgears - (RMUs) Approve | 3d | 2026-02-18 A | 2026-04-05 A | SDR-2-PRO-MSL-E-1060 | 100% | 2026-02-28 | 2026-03-02 |  |  | SIC- Cost [3.75] |
| SDR-2-PRO-MAL-E-1070 |  | Unit Substation Approve | 3d | 2026-02-18 A | 2026-05-12 A | SDR-2-PRO-MSL-E-1070 | 100% | 2026-02-28 | 2026-03-02 |  |  | SIC- Cost [3.75] |
| SDR-2-PRO-MAL-E-1080 |  | Lighting Panels Approve | 3d | 2026-02-18 A | 2026-05-12 A | SDR-2-PRO-MSL-E-1080 | 100% | 2026-02-28 | 2026-03-02 |  |  | SIC- Cost [3.75] |
| SDR-2-PRO-MAL-E-1090 |  | KWH Meter with mounting frame Approve | 3d | 2026-02-18 A | 2026-05-21 A | SDR-2-PRO-MSL-E-1090 | 100% | 2026-02-28 | 2026-03-02 |  |  | SIC- Cost [3.75] |
| SDR-2-PRO-MAL-E-1100 |  | Main Feeder Pillar Approve | 3d | 2026-02-18 A | 2026-05-13 A | SDR-2-PRO-MSL-E-1100 | 100% | 2026-02-28 | 2026-03-02 |  |  | SIC- Cost [3.75] |
| SDR-2-PRO-MAL-E-1130 |  | CCTV Cables "CAT6" Approve | 3d | 2026-04-22 A | 2026-04-29 A | SDR-2-PRO-MSL-E-1130 | 100% | 2026-02-28 | 2026-03-02 |  |  | SIC- Cost [3.75] |
| SDR-2-PRO-MAL-E-1140 |  | Racks and Patch panels Approve Approve | 3d | 2026-04-22 A | 2026-04-29 A | SDR-2-PRO-MSL-E-1140 | 100% | 2026-02-28 | 2026-03-02 |  |  | SIC- Cost [3.75] |
| SDR-2-PRO-MAL-E-1150 |  | CCTV System,Servers & WorkStations Approve | 3d | 2026-04-22 A | 2026-04-29 A | SDR-2-PRO-MSL-E-1150 | 100% | 2026-02-28 | 2026-03-02 |  |  | SIC- Cost [3.75] |
| SDR-2-PRO-MAL-E-1160 |  | Professional 55" Video wall at control room Approve | 3d | 2026-04-22 A | 2026-04-29 A | SDR-2-PRO-MSL-E-1160 | 100% | 2026-02-28 | 2026-03-02 |  |  | SIC- Cost [3.75] |
| SDR-2-PRO-MAL-E-1170 |  | CCTV Switches Approve | 3d | 2026-04-22 A | 2026-04-29 A | SDR-2-PRO-MSL-E-1170 SS+2d | 100% | 2026-02-28 | 2026-03-02 |  |  | SIC- Cost [3.75] |
| SDR-2-PRO-MAL-E-1180 |  | CCTV Wireless P2P bridges Approve | 3d | 2026-04-22 A | 2026-04-29 A | SDR-2-PRO-MSL-E-1180 | 100% | 2026-02-28 | 2026-03-02 |  |  | SIC- Cost [3.75] |
| SDR-2-PRO-MAL-E-1190 |  | CCTV UPS Approve | 3d | 2026-04-22 A | 2026-04-29 A | SDR-2-PRO-MSL-E-1190 | 100% | 2026-02-28 | 2026-03-02 |  |  | SIC- Cost [3.75] |
| SDR-2-PRO-MAL-E-1200 |  | CCTV Solar System Approve | 3d | 2026-04-22 A | 2026-04-29 A | SDR-2-PRO-MSL-E-1200 FS+3d | 100% | 2026-03-03 | 2026-03-05 |  |  | SIC- Cost [3.75] |
| SDR-2-PRO-MAL-E-1110 |  | CCTV Poles including all hardwares Approve | 3d | 2026-04-26 A | 2026-04-29 A | SDR-2-PRO-MSL-E-1110 | 100% | 2026-02-28 | 2026-03-02 |  |  | SIC- Cost [3.75] |
| SDR-2-PRO-MAL-E-1120 |  | CCTV Cables "Power" Approve | 3d | 2026-04-26 A | 2026-04-29 A | SDR-2-PRO-MSL-E-1120 | 100% | 2026-02-28 | 2026-03-02 |  |  | SIC- Cost [3.75] |
|  | PR | **Procurement** |  | 2026-02-17 | 2027-03-07 |  |  |  |  |  |  |  |
|  | 3 | **Purchase Order** |  | 2026-02-17 | 2026-11-15 |  |  |  |  |  |  |  |
|  | 1 | **Civil** |  | 2026-02-18 | 2026-11-15 |  |  |  |  |  |  |  |
| SDR-2-PRO-PO-C-1000 |  | Earth works material PO | 13d | 2026-02-18 A | 2026-05-25 A | SDR-2-PRO-MAS-C-1000 FS+2d | 100% | 2026-03-05 | 2026-03-19 |  |  |  |
| SDR-2-PRO-PO-C-1010 |  | Ready mix concrete PO | 19d | 2026-02-18 A | 2026-06-07 A | SDR-2-PRO-MAS-C-1010 | 100% | 2026-03-03 | 2026-03-29 |  |  |  |
| SDR-2-PRO-PO-C-1020 |  | Asphalt Mix PO | 17d | 2026-02-18 A | 2026-03-30 A | SDR-2-PRO-MAS-C-1020, SDR-2-MILS-1040, SDR-2-MILS-1090 FF | 100% | 2026-03-07 | 2026-03-30 |  |  |  |
| SDR-2-PRO-PO-C-1070 |  | Construction material PO | 12d | 2026-02-18 A | 2026-04-07 A | SDR-2-PRO-MAS-C-1070 | 100% | 2026-03-03 | 2026-03-16 |  |  |  |
| SDR-2-PRO-PO-C-1030 |  | Kerbstone PO | 12d | 2026-03-08 A | 2026-09-30 A | SDR-2-PRO-MAS-C-1040, SDR-2-MILS-1000 FS+66d | 100% | 2026-03-29 | 2026-04-11 |  |  |  |
| SDR-2-PRO-PO-C-1050 |  | Interlock Tiles PO | 11d | 2026-04-12 A | 2026-09-30 A | SDR-2-PRO-MAS-C-1050, SDR-2-MILS-1000 FS+84d | 100% | 2026-04-19 | 2026-04-30 |  |  |  |
| SDR-2-PRO-PO-C-1040 |  | Road Marking PO | 13d | 2026-11-01 | 2026-11-15 | SDR-2-MILS-1000 FS+73d, SDR-2-PRO-MAS-C-1030 FF |  |  |  | 2d | 0d |  |
| SDR-2-PRO-PO-C-1060 |  | Traffic Signage PO | 13d | 2026-11-01 | 2026-11-15 | SDR-2-MILS-1000 FS+92d, SDR-2-PRO-MAS-C-1060 FF |  |  |  | 0d |  |  |
| SDR-2-PRO-PO-C-1080 |  | Fence for Electrical works PO | 13d | 2026-11-01 | 2026-11-15 | SDR-2-PRO-MAS-C-1080, SDR-2-MILS-1000 FS+92d |  |  |  | 12d | 0d |  |
| SDR-2-PRO-PO-C-1090 |  | Protection Bollards for CCTV Pole PO | 13d | 2026-11-01 | 2026-11-15 | SDR-2-PRO-MAS-C-1090, SDR-2-MILS-1000 FS+115d |  |  |  | 83d | 0d |  |
| SDR-2-PRO-PO-C-1100 |  | Protection (Guard rail) for Fire hydrant PO | 7d | 2026-11-01 | 2026-11-08 | SDR-2-PRO-MAS-C-1100, SDR-2-MILS-1000 FS+100d |  |  |  | 7d | 0d |  |

| ID | WBS | Activity | Duration | Start | Finish | Predecessors | Complete | Planned start | Planned finish | Total float | Free float |
| --- | --- | --- | --- | --- | --- | --- | --- | --- | --- | --- | --- |
|  | 2 | **Mechanical** |  | 2026-02-23 | 2026-06-15 |  |  |  |  |  |  |
| SDR-2-PRO-PO-M-1000 |  | GRP Pipes & UPVC Pipes &Fittings PO | 16d | 2026-02-23 A | 2026-04-01 A | SDR-2-PRO-MAL-M-1000, SDR-2-MILS-1000 FS+54d | 100% | 2026-03-10 | 2026-04-01 |  |  |
| SDR-2-PRO-PO-M-1020 |  | Valves PO | 13d | 2026-03-07 A | 2026-06-15 A | SDR-2-PRO-MAL-M-1020, SDR-2-MILS-1000 FS+79d | 100% | 2026-04-13 | 2026-04-27 |  |  |
| SDR-2-PRO-PO-M-1010 |  | HDPE Pipes & Fittings PO | 13d | 2026-03-07 A | 2026-03-12 A | SDR-2-PRO-MAL-M-1010, SDR-2-MILS-1000 FS+75d | 100% | 2026-04-08 | 2026-04-22 |  |  |
| SDR-2-PRO-PO-M-1060 |  | Fire Hydrant PO | 14d | 2026-03-08 A | 2026-03-09 A | SDR-2-PRO-MAL-M-1060, SDR-2-MILS-1000 FS+107d | 100% | 2026-05-16 | 2026-06-04 |  |  |
| SDR-2-PRO-PO-M-1070 |  | Valve of Fire Hydrant PO | 14d | 2026-03-08 A | 2026-03-09 A | SDR-2-PRO-MAL-M-1070, SDR-2-MILS-1000 FS+107d | 100% | 2026-05-16 | 2026-06-04 |  |  |
| SDR-2-PRO-PO-M-1030 |  | Manhole PO | 13d | 2026-03-12 A | 2026-05-04 A | SDR-2-PRO-MAL-M-1030, SDR-2-MILS-1000 FS+68d | 100% | 2026-03-31 | 2026-04-14 |  |  |
| SDR-2-PRO-PO-M-1050 |  | Manhole, Catch basin and Valve box Cover PO | 13d | 2026-03-13 A | 2026-06-15 A | SDR-2-PRO-MAL-M-1050, SDR-2-MILS-1000 FS+97d | 100% | 2026-05-04 | 2026-05-18 |  |  |
| SDR-2-PRO-PO-M-1040 |  | Catch Basin PO | 13d | 2026-03-14 A | 2026-06-08 A | SDR-2-PRO-MAL-M-1040, SDR-2-MILS-1000 FS+87d | 100% | 2026-04-22 | 2026-05-06 |  |  |
|  | 3 | **Electrical** |  | 2026-02-17 | 2026-11-15 |  |  |  |  |  |  |
| SDR-2-PRO-PO-E-1060 |  | UPVC Ducts & HDPE Ducts for Telecom network PO | 18d | 2026-02-17 A | 2026-06-01 A | SDR-2-PRO-MAS-E-1010, SDR-2-MILS-1000 FS+48d | 100% | 2026-03-03 | 2026-03-28 |  |  |
| SDR-2-PRO-PO-E-1010 |  | Termination Kits & Joints PO | 17d | 2026-02-25 A | 2026-09-10 A | SDR-2-PRO-MAS-E-1000, SDR-2-MILS-1000 FS+56d | 100% | 2026-03-12 | 2026-04-05 |  |  |
| SDR-2-PRO-PO-E-1000 |  | MV Cables PO | 17d | 2026-02-25 A | 2026-03-16 A | SDR-2-PRO-MAL-E-1000, SDR-2-MILS-1000 FS+56d | 100% | 2026-03-12 | 2026-04-05 |  |  |
| SDR-2-PRO-PO-E-1020 |  | LV Cables PO | 11d | 2026-03-16 A | 2026-06-01 A | SDR-2-PRO-MAL-E-1010, SDR-2-MILS-1000 FS+70d | 100% | 2026-04-02 | 2026-04-14 |  |  |
| SDR-2-PRO-PO-E-1080 |  | Grounding System PO | 13d | 2026-03-29 A | 2026-06-01 A | SDR-2-PRO-MAS-E-1020, SDR-2-MILS-1000 FS+75d | 100% | 2026-04-08 | 2026-04-22 |  |  |
| SDR-2-PRO-PO-E-1090 |  | Switchgears - (RMUs) PO | 13d | 2026-04-22 A | 2026-04-26 A | SDR-2-PRO-MAL-E-1060, SDR-2-MILS-1000 FS+85d | 100% | 2026-04-20 | 2026-05-04 |  |  |
| SDR-2-PRO-PO-E-1070 |  | Concrete Manholes & DrawPits for Telecom Network PO | 13d | 2026-04-26 A | 2026-08-04 A | SDR-2-PRO-MAL-E-1050, SDR-2-MILS-1000 FS+63d | 100% | 2026-03-25 | 2026-04-08 |  |  |
| SDR-2-PRO-PO-E-1150 |  | CCTV Poles including all hardwares PO | 14d | 2026-04-26 A | 2026-09-30 A | SDR-2-PRO-MAL-E-1110, SDR-2-MILS-1000 FS+109d | 100% | 2026-05-18 | 2026-06-07 |  |  |
| SDR-2-PRO-PO-E-1160 |  | CCTV Cables "Power" PO | 13d | 2026-04-26 A | 2026-09-30 A | SDR-2-PRO-MAL-E-1120, SDR-2-MILS-1000 FS+115d | 100% | 2026-05-25 | 2026-06-13 |  |  |
| SDR-2-PRO-PO-E-1170 |  | CCTV Cables "CAT6" PO | 13d | 2026-04-26 A | 2026-09-30 A | SDR-2-PRO-MAL-E-1130, SDR-2-MILS-1000 FS+115d | 100% | 2026-05-25 | 2026-06-13 |  |  |
| SDR-2-PRO-PO-E-1190 |  | CCTV System,Servers & WorkStations PO | 13d | 2026-04-26 A | 2026-10-01 A | SDR-2-PRO-MAL-E-1150, SDR-2-MILS-1000 FS+137d | 100% | 2026-06-24 | 2026-07-08 |  |  |
| SDR-2-PRO-PO-E-1200 |  | Professional 55" Video wall at control room PO | 13d | 2026-04-26 A | 2026-09-05 A | SDR-2-PRO-MAL-E-1160, SDR-2-MILS-1000 FS+149d | 100% | 2026-07-08 | 2026-07-22 |  |  |
| SDR-2-PRO-PO-E-1210 |  | CCTV Switches PO | 13d | 2026-04-26 A | 2026-09-07 A | SDR-2-PRO-MAL-E-1170, SDR-2-MILS-1000 FS+161d | 100% | 2026-07-22 | 2026-08-05 |  |  |
| SDR-2-PRO-PO-E-1220 |  | CCTV Wireless P2P bridges PO | 13d | 2026-04-26 A | 2026-09-05 A | SDR-2-PRO-MAL-E-1180, SDR-2-MILS-1000 FS+169d | 100% | 2026-08-01 | 2026-08-15 |  |  |
| SDR-2-PRO-PO-E-1230 |  | CCTV UPS PO | 13d | 2026-04-26 A | 2026-09-14 A | SDR-2-PRO-MAL-E-1190, SDR-2-MILS-1000 FS+176d | 100% | 2026-08-09 | 2026-08-23 |  |  |
| SDR-2-PRO-PO-E-1240 |  | CCTV Solar System PO | 13d | 2026-04-26 A | 2026-10-01 A | SDR-2-PRO-MAL-E-1200, SDR-2-MILS-1000 FS+189d | 100% | 2026-08-24 | 2026-09-07 |  |  |
| SDR-2-PRO-PO-E-1110 |  | Lighting Panels PO | 13d | 2026-04-29 A | 2026-08-05 A | SDR-2-PRO-MAL-E-1080, SDR-2-MILS-1000 FS+99d | 100% | 2026-05-06 | 2026-05-20 |  |  |
| SDR-2-PRO-PO-E-1030 |  | Street Lighting Poles PO | 13d | 2026-04-30 A | 2026-06-02 A | SDR-2-PRO-MAL-E-1020, SDR-2-MILS-1000 FS+80d | 100% | 2026-04-14 | 2026-04-28 |  |  |
| SDR-2-PRO-PO-E-1040 |  | Street Lighting Fixtures PO | 13d | 2026-04-30 A | 2026-08-01 A | SDR-2-PRO-MAL-E-1030, SDR-2-MILS-1000 FS+92d | 100% | 2026-04-28 | 2026-05-12 |  |  |
| SDR-2-PRO-PO-E-1050 |  | DrawPits for Lighting PO | 15d | 2026-04-30 A | 2026-09-07 A | SDR-2-PRO-MAL-E-1040, SDR-2-MILS-1000 FS+104d | 100% | 2026-05-12 | 2026-06-02 |  |  |
| SDR-2-PRO-PO-E-1140 |  | PECD Ducts for CCTV network PO | 14d | 2026-05-06 A | 2026-09-30 A | SDR-2-PRO-MAS-E-1030, SDR-2-MILS-1000 FS+111d | 100% | 2026-05-20 | 2026-06-09 |  |  |
| SDR-2-PRO-PO-E-1180 |  | Racks and Patch panels PO | 13d | 2026-06-15 A | 2026-09-15 A | SDR-2-PRO-MAL-E-1140, SDR-2-MILS-1000 FS+125d | 100% | 2026-06-10 | 2026-06-24 |  |  |
| SDR-2-PRO-PO-E-1130 |  | Main Feeder Pillar PO | 13d | 2026-08-16 A | 2026-09-30 A | SDR-2-PRO-MAL-E-1100, SDR-2-MILS-1000 FS+99d | 100% | 2026-05-06 | 2026-05-20 |  |  |
| SDR-2-PRO-PO-E-1100 |  | Unit Substation PO | 13d | 2026-11-01 | 2026-11-15 | SDR-2-PRO-MAL-E-1070, SDR-2-MILS-1000 FS+80d |  |  |  | 13d | 0d |
| SDR-2-PRO-PO-E-1120 |  | KWH Meter with mounting frame PO | 13d | 2026-11-01 | 2026-11-15 | SDR-2-PRO-MAL-E-1090, SDR-2-MILS-1000 FS+99d |  |  |  | 6d | 0d |

| ID | WBS | Activity | Duration | Start | Finish | Predecessors | Complete | Remaining | Planned start | Planned finish | Total float | Free float | Calendar | Resources |
| --- | --- | --- | --- | --- | --- | --- | --- | --- | --- | --- | --- | --- | --- | --- |
|  | 1 | **Delivery to Site** |  | 2026-03-14 | 2027-03-03 |  |  |  |  |  |  |  |  |  |
|  | 2 | **Short Lead Items Delivery** |  | 2026-04-19 | 2027-03-03 |  |  |  |  |  |  |  |  |  |
|  | 1 | **Civil** |  | 2026-04-19 | 2027-03-03 |  |  |  |  |  |  |  |  |  |
| SDR-2-PRO-DES-C-1070 |  | Construction material Delivery | 110d | 2026-04-19 A | 2026-07-20 A | SDR-2-PRO-PO-C-1070 FS+20d | 100% |  | 2026-04-14 | 2026-08-05 |  |  | 7x10 Sudair Infra | SIC- Cost [6.25]; Delivery Team [2848.11 h] |
| SDR-2-PRO-DES-C-1000 |  | Earth works material Delivery | 50d | 2026-05-31 A | 2026-07-20 A | SDR-2-PRO-PO-C-1000 FS+14d | 100% |  | 2026-04-10 | 2026-06-02 |  |  | 7x10 Sudair Infra | SIC- Cost [3.75]; Delivery Team [2848.11 h] |
| SDR-2-PRO-DES-C-1010 |  | Ready mix concrete Delivery | 118d | 2026-06-15 A | 2026-06-22 A | SDR-2-PRO-PO-C-1010 FS+30d | 100% |  | 2026-05-04 | 2026-09-02 |  |  | 7x10 Sudair Infra | SIC- Cost [3.75]; Delivery Team [2848.11 h] |
| SDR-2-PRO-DES-C-1020 |  | Asphalt Mix Delivery | 98d | 2026-09-01 A | 2027-01-18 | SDR-2-PRO-PO-C-1020 FF | 40% | 78.9d | 2026-06-28 | 2026-10-04 | 8.1d | 0d | 7x10 Sudair Infra | SIC- Cost [3.75]; Delivery Team [2848.11 h] |
| SDR-2-PRO-DES-C-1030 |  | Kerbstone Delivery | 60d | 2026-09-01 A | 2026-12-11 | SDR-2-PRO-PO-C-1030 FF | 15% | 40.9d | 2026-05-05 | 2026-07-07 | 4d | 0d | 7x10 Sudair Infra | SIC- Cost [16.25]; Delivery Team [2848.11 h] |
| SDR-2-PRO-DES-C-1050 |  | Interlock Tiles Delivery | 40d | 2026-09-01 A | 2026-11-21 | SDR-2-PRO-PO-C-1050 FF | 15% | 20.9d | 2026-05-11 | 2026-06-23 | 100.1d | 0d | 7x10 Sudair Infra | SIC- Cost [16.25]; Delivery Team [2848.11 h] |
| SDR-2-PRO-DES-C-1090 |  | Protection Bollards for CCTV Pole Delivery | 17d | 2026-11-16 | 2026-12-02 | SDR-2-PRO-PO-C-1090 |  |  |  |  | 97d | 0d | 7x10 Sudair Infra | SIC- Cost [21.25]; Delivery Team [2848.11 h] |
| SDR-2-PRO-DES-C-1100 |  | Protection (Guard rail) for Fire hydrant Delivery | 60d | 2026-11-16 | 2027-01-14 | SDR-2-PRO-PO-C-1100 FS+6d |  |  |  |  | 8d | 0d | 7x10 Sudair Infra | SIC- Cost [65]; Delivery Team [2848.11 h] |
| SDR-2-PRO-DES-C-1040 |  | Road Marking Delivery | 90d | 2026-12-03 | 2027-03-03 | SDR-2-PRO-PO-C-1040 FS+15d |  |  |  |  | 3d | 0d | 7x10 Sudair Infra | SIC- Cost [17.5]; Delivery Team [2848.11 h] |
| SDR-2-PRO-DES-C-1080 |  | Fence for Electrical works Delivery | 29d | 2026-12-04 | 2027-01-01 | SDR-2-PRO-PO-C-1080 FS+16d |  |  |  |  | 14d | 0d | 7x10 Sudair Infra | SIC- Cost [25]; Delivery Team [2848.11 h] |
| SDR-2-PRO-DES-C-1060 |  | Traffic Signage Manufacture and Delivery | 20d | 2026-12-10 | 2026-12-29 | SDR-2-PRO-PO-C-1060 FS+21d |  |  |  |  | 0d |  | 7x10 Sudair Infra | SIC- Cost [15]; Delivery Team [2848.11 h] |
|  | 3 | **Electrical** |  | 2026-04-20 | 2026-12-07 |  |  |  |  |  |  |  |  |  |
| SDR-2-PRO-DES-E-1000 |  | UPVC Ducts & HDPE Ducts for Telecom network M Delivery | 35d | 2026-04-20 A | 2026-07-01 A | SDR-2-PRO-PO-E-1060 FS+19d | 100% |  | 2026-04-20 | 2026-05-24 |  |  | 7x10 Sudair Infra | SIC- Cost [46.25]; Delivery Team [2848.11 h] |
| SDR-2-PRO-DES-E-1010 |  | Grounding System Delivery | 37d | 2026-06-02 A | 2026-07-01 A | SDR-2-PRO-PO-E-1080 FS+12d | 100% |  | 2026-05-07 | 2026-06-16 |  |  | 7x10 Sudair Infra | SIC- Cost [46.25]; Delivery Team [2848.11 h] |
| SDR-2-PRO-DES-E-1020 |  | PECD Ducts for CCTV network Delivery | 37d | 2026-11-01 | 2026-12-07 | SDR-2-PRO-PO-E-1140 FF |  |  |  |  | 9d | 0d | 7x10 Sudair Infra | SIC- Cost [46.25]; Delivery Team [2848.11 h] |
|  | 5 | **Long Lead Items Delivery** |  | 2026-03-14 | 2027-01-09 |  |  |  |  |  |  |  |  |  |
|  | 3 | **Electrical** |  | 2026-03-14 | 2027-01-09 |  |  |  |  |  |  |  |  |  |
| SDR-2-PRO-DEL-E-1000 |  | MV Cables Delivery | 70d | 2026-03-14 A | 2026-09-10 A | SDR-2-PRO-PO-E-1000 FS+24d | 100% |  | 2026-05-04 | 2026-07-16 |  |  | 7x10 Sudair Infra | SIC- Cost [87.5]; Delivery Team [2848.11 h] |
| SDR-2-PRO-DEL-E-1060 |  | Switchgears - (RMUs) Delivery | 50d | 2026-05-10 A | 2026-05-18 A | SDR-2-PRO-PO-E-1090 FS+8d | 100% |  | 2026-05-14 | 2026-07-06 |  |  | 7x10 Sudair Infra | SIC- Cost [62.5]; Delivery Team [2848.11 h] |
| SDR-2-PRO-DEL-E-1010 |  | LV Cables Delivery | 70d | 2026-06-27 A | 2026-09-17 A | SDR-2-PRO-PO-E-1020 FS+22d | 100% |  | 2026-05-11 | 2026-07-23 |  |  | 7x10 Sudair Infra | SIC- Cost [87.5]; Delivery Team [2848.11 h] |
| SDR-2-PRO-DEL-E-1050 |  | Concrete Manholes & DrawPits for Telecom Network Delivery | 65d | 2026-07-21 A | 2026-08-24 A | SDR-2-PRO-PO-E-1070 FS+28d | 100% |  | 2026-05-12 | 2026-07-19 |  |  | 7x10 Sudair Infra | SIC- Cost [62.5]; Delivery Team [2848.11 h] |
| SDR-2-PRO-DEL-E-1210 |  | Termination Kits & Joints Delivery | 60d | 2026-08-24 A | 2026-09-14 A | SDR-2-PRO-PO-E-1010 FS+30d | 100% |  | 2026-05-11 | 2026-07-13 |  |  | 7x10 Sudair Infra | SIC- Cost [75]; Delivery Team [2848.11 h] |
| SDR-2-PRO-DEL-E-1140 |  | Racks and Patch panels Delivery | 50d | 2026-08-24 A | 2026-10-08 A | SDR-2-PRO-PO-E-1180 FF | 100% |  | 2026-07-05 | 2026-08-23 |  |  | 7x10 Sudair Infra | SIC- Cost [62.5]; Delivery Team [2848.11 h] |
| SDR-2-PRO-DEL-E-1160 |  | Professional 55" Video wall at control room Delivery | 50d | 2026-08-24 A | 2026-10-06 A | SDR-2-PRO-PO-E-1200 FF | 100% |  | 2026-08-02 | 2026-09-20 |  |  | 7x10 Sudair Infra | SIC- Cost [62.5]; Delivery Team [2848.11 h] |
| SDR-2-PRO-DEL-E-1170 |  | CCTV Switches Delivery | 50d | 2026-08-24 A | 2026-10-06 A | SDR-2-PRO-PO-E-1210 FF | 100% |  | 2026-08-16 | 2026-10-05 |  |  | 7x10 Sudair Infra | SIC- Cost [62.5]; Delivery Team [2848.11 h] |
| SDR-2-PRO-DEL-E-1180 |  | CCTV Wireless P2P bridges Delivery | 50d | 2026-08-24 A | 2026-09-16 A | SDR-2-PRO-PO-E-1220 FF | 100% |  | 2026-08-25 | 2026-10-14 |  |  | 7x10 Sudair Infra | SIC- Cost [62.5]; Delivery Team [2848.11 h] |
| SDR-2-PRO-DEL-E-1190 |  | CCTV UPS Delivery | 50d | 2026-08-24 A | 2026-10-08 A | SDR-2-PRO-PO-E-1230 FF | 100% |  | 2026-08-24 | 2026-10-13 |  |  | 7x10 Sudair Infra | SIC- Cost [62.5]; Delivery Team [2848.11 h] |
| SDR-2-PRO-DEL-E-1040 |  | DrawPits for Lighting Delivery | 40d | 2026-09-07 A | 2026-09-14 A | SDR-2-PRO-PO-E-1050 FS+12d | 100% |  | 2026-06-17 | 2026-07-26 |  |  | 7x10 Sudair Infra | SIC- Cost [50]; Delivery Team [2848.11 h] |
| SDR-2-PRO-DEL-E-1020 |  | Street Lighting Poles Delivery | 70d | 2026-11-01 | 2027-01-09 | SDR-2-PRO-PO-E-1030 FS+22d |  |  |  |  | 10d | 0d | 7x10 Sudair Infra | SIC- Cost [87.5]; Delivery Team [2848.11 h] |
| SDR-2-PRO-DEL-E-1030 |  | Street Lighting Fixtures Delivery | 70d | 2026-11-01 | 2027-01-09 | SDR-2-PRO-PO-E-1040 FS+9d |  |  |  |  | 10d | 0d | 7x10 Sudair Infra | SIC- Cost [87.5]; Delivery Team [2848.11 h] |
| SDR-2-PRO-DEL-E-1070 |  | Unit Substation Delivery | 65d | 2026-11-01 | 2027-01-04 | SDR-2-PRO-PO-E-1100 SS |  |  |  |  | 15d | 0d | 7x10 Sudair Infra | SIC- Cost [81.25]; Delivery Team [2848.11 h] |
| SDR-2-PRO-DEL-E-1080 |  | Lighting Panels Delivery | 65d | 2026-11-01 | 2027-01-04 | SDR-2-PRO-PO-E-1110 FS+20d |  |  |  |  | 6d | 0d | 7x10 Sudair Infra | SIC- Cost [62.5]; Delivery Team [2848.11 h] |
| SDR-2-PRO-DEL-E-1090 |  | KWH Meter with mounting frame Delivery | 50d | 2026-11-01 | 2026-12-20 | SDR-2-PRO-PO-E-1120 SS |  |  |  |  | 7d | 0d | 7x10 Sudair Infra | SIC- Cost [62.5]; Delivery Team [2848.11 h] |
| SDR-2-PRO-DEL-E-1100 |  | Main Feeder Pillar Manufacture and Delivery | 50d | 2026-11-01 | 2026-12-20 | SDR-2-PRO-PO-E-1130 FS+12d |  |  |  |  | 21d | 0d | 7x10 Sudair Infra | SIC- Cost [62.5]; Delivery Team [2848.11 h] |
| SDR-2-PRO-DEL-E-1110 |  | CCTV Poles including all hardwares Delivery | 65d | 2026-11-01 | 2027-01-04 | SDR-2-PRO-PO-E-1150 FF |  |  |  |  | 5d | 0d | 7x10 Sudair Infra | SIC- Cost [62.5]; Delivery Team [2848.11 h] |
| SDR-2-PRO-DEL-E-1120 |  | CCTV Cables "Power" Delivery | 65d | 2026-11-01 | 2027-01-04 | SDR-2-PRO-PO-E-1160 FF |  |  |  |  | 5d | 0d | 7x10 Sudair Infra | SIC- Cost [62.5]; Delivery Team [2848.11 h] |
| SDR-2-PRO-DEL-E-1130 |  | CCTV Cables "CAT6" Delivery | 45d | 2026-11-01 | 2026-12-15 | SDR-2-PRO-PO-E-1170 FF |  |  |  |  | 6d | 0d | 7x10 Sudair Infra | SIC- Cost [56.25]; Delivery Team [2848.11 h] |
| SDR-2-PRO-DEL-E-1150 |  | CCTV System,Servers & WorkStations Delivery | 50d | 2026-11-01 | 2026-12-20 | SDR-2-PRO-PO-E-1190 FF |  |  |  |  | 20d | 0d | 7x10 Sudair Infra | SIC- Cost [62.5]; Delivery Team [2848.11 h] |
| SDR-2-PRO-DEL-E-1200 |  | CCTV Solar System Delivery | 55d | 2026-11-01 | 2026-12-25 | SDR-2-PRO-PO-E-1240 FF |  |  |  |  | 29d | 0d | 7x10 Sudair Infra | SIC- Cost [75]; Delivery Team [2848.11 h] |

| ID | WBS | Activity | Duration | Start | Finish | Predecessors | Complete | Remaining | Planned start | Planned finish | Total float | Free float | Calendar | Resources |
| --- | --- | --- | --- | --- | --- | --- | --- | --- | --- | --- | --- | --- | --- | --- |
|  | 2 | **Mechanical** |  | 2026-03-16 | 2026-10-01 |  |  |  |  |  |  |  |  |  |
| SDR-2-PRO-DEL-M-1000 |  | GRP Pipes & UPVC Pipes &Fittings Delivery | 48d | 2026-03-16 A | 2026-07-13 A | SDR-2-PRO-PO-M-1000 FS+25d | 100% |  | 2026-05-01 | 2026-06-21 |  |  | 7x10 Sudair Infra | SIC- Cost [60]; Delivery Team [2848.11 h] |
| SDR-2-PRO-DEL-M-1010 |  | HDPE Pipes & Fittings Delivery | 40d | 2026-03-16 A | 2026-07-13 A | SDR-2-PRO-PO-M-1010 FS+21d | 100% |  | 2026-05-18 | 2026-06-30 |  |  | 7x10 Sudair Infra | SIC- Cost [50]; Delivery Team [2848.11 h] |
| SDR-2-PRO-DEL-M-1030 |  | Manhole Delivery | 48d | 2026-05-12 A | 2026-09-12 A | SDR-2-PRO-PO-M-1030 FS+27d | 100% |  | 2026-05-17 | 2026-07-07 |  |  | 7x10 Sudair Infra | SIC- Cost [60]; Delivery Team [2848.11 h] |
| SDR-2-PRO-DEL-M-1050 |  | Manhole, Catch basin and Valve box Cover Delivery | 40d | 2026-05-12 A | 2026-09-12 A | SDR-2-PRO-PO-M-1050 FS+8d | 100% |  | 2026-06-02 | 2026-07-11 |  |  | 7x10 Sudair Infra | SIC- Cost [50]; Delivery Team [2848.11 h] |
| SDR-2-PRO-DEL-M-1060 |  | Fire Hydrant Delivery | 75d | 2026-06-03 A | 2026-09-21 A | SDR-2-PRO-PO-M-1060 FS+2d | 100% |  | 2026-06-08 | 2026-08-21 |  |  | 7x10 Sudair Infra | SIC- Cost [93.75]; Delivery Team [2848.11 h] |
| SDR-2-PRO-DEL-M-1070 |  | Valve of Fire Hydrant Delivery | 75d | 2026-06-03 A | 2026-09-21 A | SDR-2-PRO-PO-M-1070 FS+2d | 100% |  | 2026-06-08 | 2026-08-21 |  |  | 7x10 Sudair Infra | SIC- Cost [93.75]; Delivery Team [2848.11 h] |
| SDR-2-PRO-DEL-M-1020 |  | Valves Delivery | 100d | 2026-06-03 A | 2026-10-01 A | SDR-2-PRO-PO-M-1020 FS+20d | 100% |  | 2026-05-21 | 2026-09-01 |  |  | 7x10 Sudair Infra | SIC- Cost [125]; Delivery Team [2848.11 h] |
| SDR-2-PRO-DEL-M-1040 |  | Catch Basin Delivery | 50d | 2026-06-17 A | 2026-09-12 A | SDR-2-PRO-PO-M-1040 FS+10d | 100% |  | 2026-05-19 | 2026-07-11 |  |  | 7x10 Sudair Infra | SIC- Cost [62.5]; Delivery Team [2848.11 h] |
|  | 4 | **Materials Staging Time** |  | 2026-03-17 | 2027-03-07 |  |  |  |  |  |  |  |  |  |
|  | 1 | **Civil** |  | 2026-04-21 | 2027-03-07 |  |  |  |  |  |  |  |  |  |
| SDR-2-PRO-ST-C-1070 |  | Construction material staging | 4d | 2026-04-21 A | 2026-07-21 A | SDR-2-PRO-DES-C-1070 SS+40d | 100% |  | 2026-05-24 | 2026-05-31 |  |  | 7x10 Sudair Infra |  |
| SDR-2-PRO-ST-C-1000 |  | Earth works material staging | 4d | 2026-06-01 A | 2026-07-21 A | SDR-2-PRO-DES-C-1000 SS | 100% |  | 2026-04-10 | 2026-04-13 |  |  | 7x10 Sudair Infra |  |
| SDR-2-PRO-ST-C-1010 |  | Ready mix concrete staging | 4d | 2026-07-01 A | 2026-07-04 A | SDR-2-PRO-DES-C-1000 SS | 100% |  | 2026-04-10 | 2026-04-13 |  |  | 7x10 Sudair Infra |  |
| SDR-2-PRO-ST-C-1050 |  | Interlock Tiles staging | 4d | 2026-09-01 A | 2026-11-25 | SDR-2-PRO-DES-C-1050 | 15% | 4d | 2026-10-25 | 2026-10-29 | 100.1d | 97.1d | 7x10 Sudair Infra |  |
| SDR-2-PRO-ST-C-1030 |  | Kerbstone staging | 4d | 2026-09-16 A | 2026-12-11 | SDR-2-PRO-DES-C-1030 FF | 15% | 0.4d | 2026-07-08 | 2026-07-11 | 63.1d | 0.1d | 7x10 Sudair Infra |  |
| SDR-2-PRO-ST-C-1020 |  | Asphalt Mix staging | 0d | 2026-10-01 A | 2027-01-18 | SDR-2-PRO-DES-C-1020 FF | 40% | 0d | 2027-01-12 | 2027-01-12 | 36.2d | 0d | 7x10 Sudair Infra |  |
| SDR-2-PRO-ST-C-1090 |  | Protection Bollards for CCTV Pole staging | 4d | 2026-12-07 | 2026-12-10 | SDR-2-PRO-DES-C-1090 FS+4d |  |  |  |  | 97d | 35d | 7x10 Sudair Infra |  |
| SDR-2-PRO-ST-C-1060 |  | Traffic Signage staging | 4d | 2026-12-30 | 2027-01-02 | SDR-2-PRO-DES-C-1060 |  |  |  |  | 119d | 116d | 7x10 Sudair Infra |  |
| SDR-2-PRO-ST-C-1080 |  | Fence for Electrical works staging | 4d | 2027-01-02 | 2027-01-05 | SDR-2-PRO-DES-C-1080 |  |  |  |  | 14d | 9d | 7x10 Sudair Infra |  |
| SDR-2-PRO-ST-C-1100 |  | Protection (Guard rail) for Fire hydrant staging | 4d | 2027-01-15 | 2027-01-18 | SDR-2-PRO-DES-C-1100 |  |  |  |  | 8d | 0d | 7x10 Sudair Infra |  |
| SDR-2-PRO-ST-C-1040 |  | Road Marking staging | 4d | 2027-03-04 | 2027-03-07 | SDR-2-PRO-DES-C-1040 |  |  |  |  | 23d | 21d | 7x10 Sudair Infra |  |
|  | 2 | **Mechanical** |  | 2026-03-21 | 2026-09-22 |  |  |  |  |  |  |  |  |  |
| SDR-2-PRO-ST-M-1000 |  | GRP Pipes & Fittings staging | 10d | 2026-03-21 A | 2026-07-21 A | SDR-2-PRO-DEL-M-1000 | 100% |  | 2026-06-22 | 2026-07-01 |  |  | 7x10 Sudair Infra |  |
| SDR-2-PRO-ST-M-1010 |  | HDPE Pipes & Fittings staging | 10d | 2026-03-21 A | 2026-07-21 A | SDR-2-PRO-DEL-M-1010 | 100% |  | 2026-07-01 | 2026-07-10 |  |  | 7x10 Sudair Infra |  |
| SDR-2-PRO-ST-M-1050 |  | Manhole, Catch basin and Valve box Cover staging | 10d | 2026-05-13 A | 2026-09-12 A | SDR-2-PRO-DEL-M-1050 FF | 100% |  | 2026-07-12 | 2026-07-21 |  |  | 7x10 Sudair Infra |  |
| SDR-2-PRO-ST-M-1030 |  | Manhole staging | 10d | 2026-05-13 A | 2026-09-12 A | SDR-2-PRO-DEL-M-1030 FF | 100% |  | 2026-07-08 | 2026-07-17 |  |  | 7x10 Sudair Infra |  |
| SDR-2-PRO-ST-M-1020 |  | Valves staging | 10d | 2026-06-15 A | 2026-09-22 A | SDR-2-PRO-DEL-M-1020 FF | 100% |  | 2026-09-02 | 2026-09-11 |  |  | 7x10 Sudair Infra |  |
| SDR-2-PRO-ST-M-1060 |  | Fire Hydrant staging | 10d | 2026-06-18 A | 2026-09-21 A | SDR-2-PRO-DEL-M-1060 FF | 100% |  | 2026-08-22 | 2026-08-31 |  |  | 7x10 Sudair Infra |  |
| SDR-2-PRO-ST-M-1070 |  | Valve of Fire Hydrant staging | 10d | 2026-06-18 A | 2026-09-21 A | SDR-2-PRO-DEL-M-1070 FF | 100% |  | 2026-08-22 | 2026-08-31 |  |  | 7x10 Sudair Infra |  |
| SDR-2-PRO-ST-M-1040 |  | Catch Basin staging | 10d | 2026-06-18 A | 2026-09-12 A | SDR-2-PRO-DEL-M-1040 FF | 100% |  | 2026-07-12 | 2026-07-21 |  |  | 7x10 Sudair Infra |  |

| ID | WBS | Activity | Duration | Start | Finish | Predecessors | Complete | Planned start | Planned finish | Total float | Free float | Calendar |
| --- | --- | --- | --- | --- | --- | --- | --- | --- | --- | --- | --- | --- |
|  | 3 | **Electrical** |  | 2026-03-17 | 2027-01-14 |  |  |  |  |  |  |  |
| SDR-2-PRO-ST-E-1000 |  | MV Cables staging | 10d | 2026-03-17 A | 2026-09-10 A | SDR-2-PRO-DEL-E-1000 | 100% | 2026-07-17 | 2026-07-26 |  |  | 7x10 Sudair Infra |
| SDR-2-PRO-ST-E-1090 |  | Switchgears - (RMUs) staging | 10d | 2026-05-17 A | 2026-06-01 A | SDR-2-PRO-DEL-E-1060 | 100% | 2026-07-07 | 2026-07-16 |  |  | 7x10 Sudair Infra |
| SDR-2-PRO-ST-E-1060 |  | UPVC Ducts & HDPE Ducts for Telecom network staging | 10d | 2026-06-01 A | 2026-07-21 A | SDR-2-PRO-DES-E-1000 | 100% | 2026-05-25 | 2026-06-07 |  |  | 7x10 Sudair Infra |
| SDR-2-PRO-ST-E-1080 |  | Grounding System staging | 10d | 2026-06-03 A | 2026-07-21 A | SDR-2-PRO-DES-E-1010 | 100% | 2026-06-17 | 2026-06-26 |  |  | 7x10 Sudair Infra |
| SDR-2-PRO-ST-E-1020 |  | LV Cables staging | 10d | 2026-07-20 A | 2026-09-17 A | SDR-2-PRO-DEL-E-1010 FS+3d | 100% | 2026-07-27 | 2026-08-05 |  |  | 7x10 Sudair Infra |
| SDR-2-PRO-ST-E-1070 |  | Concrete Manholes & DrawPits for Telecom Network staging | 10d | 2026-07-27 A | 2026-08-24 A | SDR-2-PRO-DEL-E-1050 | 100% | 2026-07-20 | 2026-07-29 |  |  | 7x10 Sudair Infra |
| SDR-2-PRO-ST-E-1050 |  | DrawPits for Lighting staging | 10d | 2026-08-20 A | 2026-09-07 A | SDR-2-PRO-DEL-E-1040 | 100% | 2026-07-27 | 2026-08-05 |  |  | 7x10 Sudair Infra |
| SDR-2-PRO-ST-E-1010 |  | Termination Kits & Joints staging | 10d | 2026-08-24 A | 2026-09-14 A | SDR-2-PRO-DEL-E-1210 | 100% | 2026-10-05 | 2026-10-14 |  |  | 7x10 Sudair Infra |
| SDR-2-PRO-ST-E-1180 |  | Racks and Patch panels staging | 10d | 2026-08-24 A | 2026-10-08 A | SDR-2-PRO-DEL-E-1140 | 100% | 2026-10-05 | 2026-10-14 |  |  | 7x10 Sudair Infra |
| SDR-2-PRO-ST-E-1200 |  | Professional 55" Video wall at control room staging | 10d | 2026-08-24 A | 2026-10-06 A | SDR-2-PRO-DEL-E-1160 | 100% | 2026-10-05 | 2026-10-14 |  |  | 7x10 Sudair Infra |
| SDR-2-PRO-ST-E-1210 |  | CCTV Switches staging | 10d | 2026-08-24 A | 2026-10-06 A | SDR-2-PRO-DEL-E-1170 | 100% | 2026-10-05 | 2026-10-14 |  |  | 7x10 Sudair Infra |
| SDR-2-PRO-ST-E-1220 |  | CCTV Wireless P2P bridges staging | 10d | 2026-08-24 A | 2026-09-16 A | SDR-2-PRO-DEL-E-1180 | 100% | 2026-10-05 | 2026-10-14 |  |  | 7x10 Sudair Infra |
| SDR-2-PRO-ST-E-1230 |  | CCTV UPS staging | 10d | 2026-08-24 A | 2026-10-08 A | SDR-2-PRO-DEL-E-1190 | 100% | 2026-10-05 | 2026-10-14 |  |  | 7x10 Sudair Infra |
| SDR-2-PRO-ST-E-1030 |  | Street Lighting Poles staging | 10d | 2026-11-01 | 2026-11-10 | SDR-2-PRO-DEL-E-1020 SS |  |  |  | 14d | 0d | 7x10 Sudair Infra |
| SDR-2-PRO-ST-E-1040 |  | Street Lighting Fixtures staging | 10d | 2026-11-01 | 2026-11-10 | SDR-2-PRO-DEL-E-1030 SS |  |  |  | 14d | 0d | 7x10 Sudair Infra |
| SDR-2-PRO-ST-E-1100 |  | Unit Substation staging | 10d | 2026-11-01 | 2026-11-10 | SDR-2-PRO-DEL-E-1070 SS |  |  |  | 87d | 52d | 7x10 Sudair Infra |
| SDR-2-PRO-ST-E-1110 |  | Lighting Panels staging | 10d | 2026-11-01 | 2026-11-10 | SDR-2-PRO-DEL-E-1080 SS |  |  |  | 46d | 0d | 7x10 Sudair Infra |
| SDR-2-PRO-ST-E-1130 |  | Main Feeder Pillar staging | 10d | 2026-11-03 | 2026-11-12 | SDR-2-PRO-DEL-E-1100 SS+2d |  |  |  | 44d | 1d | 7x10 Sudair Infra |
| SDR-2-PRO-ST-E-1140 |  | PECD Ducts for CCTV network staging | 10d | 2026-12-08 | 2026-12-17 | SDR-2-PRO-DES-E-1020 |  |  |  | 24d | 8d | 7x10 Sudair Infra |
| SDR-2-PRO-ST-E-1170 |  | CCTV Cables "CAT6" staging | 10d | 2026-12-16 | 2026-12-25 | SDR-2-PRO-DEL-E-1130 |  |  |  | 16d | 0d | 7x10 Sudair Infra |
| SDR-2-PRO-ST-E-1120 |  | KWH Meter with mounting frame staging | 10d | 2026-12-21 | 2026-12-30 | SDR-2-PRO-DEL-E-1090 |  |  |  | 7d | 0d | 7x10 Sudair Infra |
| SDR-2-PRO-ST-E-1190 |  | CCTV System,Servers & WorkStations staging | 10d | 2026-12-21 | 2026-12-30 | SDR-2-PRO-DEL-E-1150 |  |  |  | 20d | 15d | 7x10 Sudair Infra |
| SDR-2-PRO-ST-E-1240 |  | CCTV Solar System staging | 10d | 2026-12-26 | 2027-01-04 | SDR-2-PRO-DEL-E-1200 |  |  |  | 29d | 0d | 7x10 Sudair Infra |
| SDR-2-PRO-ST-E-1150 |  | CCTV Poles including all hardwares staging | 10d | 2027-01-05 | 2027-01-14 | SDR-2-PRO-DEL-E-1110 |  |  |  | 5d | 0d | 7x10 Sudair Infra |
| SDR-2-PRO-ST-E-1160 |  | CCTV Cables "Power" staging | 10d | 2027-01-05 | 2027-01-14 | SDR-2-PRO-DEL-E-1120 |  |  |  | 5d | 0d | 7x10 Sudair Infra |

| ID | WBS | Activity | Duration | Start | Finish | Predecessors | Complete | Planned start | Planned finish | Resources | Cost | ROAD WORK |
| --- | --- | --- | --- | --- | --- | --- | --- | --- | --- | --- | --- | --- |
|  | CON | **Construction** |  | 2026-02-06 | 2027-07-04 |  |  |  |  |  |  |  |
|  | RO | **ROAD WORKS** |  | 2026-02-06 | 2027-06-02 |  |  |  |  |  |  |  |
|  | ZA | **ZONE A** |  | 2026-02-06 | 2027-06-02 |  |  |  |  |  |  |  |
|  | 14 | **GENERAL WORKS** |  | 2026-02-06 | 2026-03-16 |  |  |  |  |  |  |  |
|  | 10 | **Cleaning and removal of organic materials in Zone A** |  | 2026-02-06 | 2026-03-06 |  |  |  |  |  |  |  |
| SDR-2-CON-RW-ZA-1000 |  | Cleaning and removal of organic materials in Zone A | 16d | 2026-02-06 A | 2026-03-06 A | SDR-2-MOBL-1060 | 100% | 2026-02-07 | 2026-02-24 | SIC- Cost [19]; Excavator [428.42 h]; Excavator Operator [219.73 h]; Dumper Operator [219.73 h]; Dumper Truck [1498.7 h]; Grader [920 h]; Grader Operator [219.73 h]; Loader [698.42 h]; Loader Operator [219.73 h]; Un-Skilled Labor [219.73 h]; Supervisor [219.73 h]; Skilled Labor [219.73 h] | 574,626.87 |  |
|  | 12 | **Surveying works Zone A** |  | 2026-03-06 | 2026-03-16 |  |  |  |  |  |  |  |
| SDR-2-CON-RW-ZA-1010 |  | Surveying works Zone A | 16d | 2026-03-06 A | 2026-03-16 A | SDR-2-ENG-APP-M-1010 SS, SDR-2-PREL-1100, SDR-2-CON-RW-ZA-1000, SDR-2-PRO-MAS-C-1030 SS, SDR-2-PRO-MAS-C-1060 SS, SDR-2-PRO-MAL-E-1150, SDR-2-PRO-MAL-E-1140, SDR-2-PRO-MAL-E-1130, SDR-2-PRO-MAL-E-1120, SDR-2-PRO-MAL-E-1110, SDR-2-PRO-MAL-E-1000, SDR-2-PRO-MAL-E-1010, SDR-2-PRO-MAL-E-1020, SDR-2-PRO-MAL-E-1030, SDR-2-PRO-MAL-E-1040, SDR-2-PRO-MAL-E-1050, SDR-2-PRO-MAL-E-1180, SDR-2-PRO-MAL-E-1060, SDR-2-PRO-MAL-E-1070, SDR-2-PRO-MAL-E-1080, SDR-2-PRO-MAL-E-1090, SDR-2-PRO-MAL-E-1100, SDR-2-PRO-MAL-E-1190, SDR-2-PRO-MAL-M-1000, SDR-2-PRO-MAL-M-1010, SDR-2-PRO-MAL-M-1020, SDR-2-PRO-MAL-M-1030, SDR-2-PRO-MAL-M-1040, SDR-2-PRO-MAL-M-1050, SDR-2-PRO-MAL-M-1060, SDR-2-PRO-MAL-M-1070, SDR-2-PRO-MAS-E-1000, SDR-2-PRO-MAS-E-1010, SDR-2-PRO-MAS-E-1020, SDR-2-PRO-MAS-E-1030, SDR-2-PRO-MAS-C-1000, SDR-2-PRO-MAS-C-1010, SDR-2-PRO-MAS-C-1040, SDR-2-PRO-MAS-C-1020, SDR-2-PRO-MAS-C-1050, SDR-2-PRO-MAS-C-1070, SDR-2-PRO-MAS-C-1090, SDR-2-PRO-MAS-C-1100, SDR-2-PRO-MAS-C-1080 | 100% | 2026-03-07 | 2026-03-29 | SIC- Cost [10]; Excavator [380.62 h]; Grader [410.62 h]; Un-Skilled Labor [191.07 h]; Surveyor [191.07 h]; Supervisor [95.54 h] | 140,298.51 |  |
|  | 1 | **ROAD WORKS IN ( PH2-COL-MC10 )** |  | 2026-03-23 | 2027-06-02 |  |  |  |  |  |  |  |
|  | 1 | **Earth Works Road** |  | 2026-03-23 | 2026-05-07 |  |  |  |  |  |  |  |
| SDR-2-CON-RW-ZA-1020 |  | Roadway Excavation and cuttings | 20d | 2026-03-23 A | 2026-05-07 A | SDR-2-CON-RW-ZA-1010 FS+11d, SDR-2-PRO-ST-C-1000 FF | 100% | 2026-04-12 | 2026-05-04 | SIC- Cost [15]; Excavator [20 h]; Excavator Operator [143.3 h]; Dumper Operator [143.3 h]; Dumper Truck [920 h]; Grader [300 h]; Grader Operator [143.3 h]; Loader [150 h]; Loader Operator [143.3 h]; Un-Skilled Labor [1433.04 h]; Supervisor [143.3 h]; Skilled Labor [1433.04 h] | 23,081.48 | CUT |
|  | 10 | **Backfilling Works** |  | 2026-04-07 | 2026-06-12 |  |  |  |  |  |  |  |
| SDR-2-CON-RW-ZA-2860 |  | Embankments to the Road 1 Layer | 21d | 2026-04-07 A | 2026-04-30 A | SDR-2-CON-RW-ZA-1020 | 100% | 2026-05-05 | 2026-06-02 | SIC- Cost; Compactor [345.95 h]; Excavator [12.5 h]; Excavator Operator [102.24 h]; Dumper Operator [203.01 h]; Dumper Truck [1275 h]; Grader [212.5 h]; Grader Operator [203.01 h]; Loader [94.4 h]; Loader Operator [112.32 h]; Un-Skilled Labor [176.31 h]; Supervisor [65.9 h]; Skilled Labor [176.31 h]; Water Tanker [412.22 h] | 63,450.93 | BF |
| SDR-2-CON-RW-ZA-2870 |  | Embankments to the Road 2 Layer | 21d | 2026-05-16 A | 2026-05-23 A | SDR-2-CON-RW-ZA-2860 | 100% | 2026-06-03 | 2026-06-27 | SIC- Cost; Compactor [641.75 h]; Excavator [12.5 h]; Excavator Operator [112.32 h]; Dumper Operator [203.02 h]; Dumper Truck [1275 h]; Grader [212.5 h]; Grader Operator [203.02 h]; Loader [60.63 h]; Loader Operator [122.4 h]; Un-Skilled Labor [148.01 h]; Supervisor [33.8 h]; Skilled Labor [39.48 h]; Water Tanker [383.07 h] | 72,515.34 | BF |
| SDR-2-CON-RW-ZA-2880 |  | Embankments to the Road 3 Layer | 21d | 2026-05-23 A | 2026-06-04 A | SDR-2-CON-RW-ZA-2870, SDR-2-PRO-DES-E-1010, SDR-2-PRO-DES-E-1010 FF | 100% | 2026-06-28 | 2026-07-21 | SIC- Cost; Compactor [360.48 h]; Excavator [12.5 h]; Excavator Operator [203.01 h]; Dumper Operator [203.01 h]; Dumper Truck [1275 h]; Grader [60 h]; Grader Operator [203.01 h]; Loader [40 h]; Loader Operator [203.01 h]; Un-Skilled Labor [192.65 h]; Supervisor [203.01 h]; Skilled Labor [192.65 h]; Water Tanker [182.81 h] | 262,868.12 | BF |
| SDR-2-CON-RW-ZA-1030 |  | Embankments to the Road 4 Layer | 21d | 2026-06-04 A | 2026-06-12 A | SDR-2-CON-RW-ZA-2880 | 100% | 2026-07-22 | 2026-08-15 | SIC- Cost; Compactor [100 h]; Excavator [12.5 h]; Excavator Operator [203.01 h]; Dumper Operator [132.47 h]; Dumper Truck [1275 h]; Grader [180.36 h]; Grader Operator [203.01 h]; Loader [231.33 h]; Loader Operator [203.01 h]; Un-Skilled Labor [192.65 h]; Supervisor [203.01 h]; Skilled Labor [192.65 h]; Water Tanker [182.81 h] | 507,607.4 | BF |
|  | 11 | **Subgrade** |  | 2026-08-11 | 2026-08-31 |  |  |  |  |  |  |  |
| SDR-2-CON-RW-ZA-1060 |  | Subgrade layer works | 21d | 2026-08-11 A | 2026-08-31 A | SDR-2-CON-RW-ZA-1030 | 100% | 2026-08-16 | 2026-09-08 | SIC- Cost; Compactor [150 h]; Excavator [21 h]; Excavator Operator [143.3 h]; Dumper Operator [143.3 h]; Dumper Truck [289 h]; Grader [120 h]; Grader Operator [143.3 h]; Loader [90.82 h]; Loader Operator [143.3 h]; Un-Skilled Labor [143.3 h]; Supervisor [143.3 h]; Skilled Labor [143.3 h]; Water Tanker [123 h]; Water Tanker Operator [143.3 h] | 82,090.04 | SUB |
|  | 9 | **Earth Works Plot** |  | 2026-05-16 | 2026-07-21 |  |  |  |  |  |  |  |
| SDR-2-CON-RW-ZA-1040 |  | Plot Excavation for cuttings (all types of soil) | 21d | 2026-05-16 A | 2026-05-31 A | SDR-2-CON-RW-ZA-1060, SDR-2-PRO-DES-C-1070, SDR-2-PRO-DES-C-1000 | 100% | 2026-09-09 | 2026-10-04 | SIC- Cost; Excavator [6 h]; Excavator Operator [81.48 h]; Dumper Operator [81.48 h]; Dumper Truck [550 h]; Grader [348.86 h]; Grader Operator [81.48 h]; Loader [474.67 h]; Loader Operator [81.48 h]; Un-Skilled Labor [38.53 h]; Supervisor [9.63 h]; Skilled Labor [38.53 h] | 79,092.64 |  |
| SDR-2-CON-RW-ZA-2890 |  | Embankments to the Plot Layer 1 | 21d | 2026-05-23 A | 2026-06-04 A | SDR-2-CON-RW-ZA-1040 | 100% | 2026-10-05 | 2026-10-28 | SIC- Cost; Excavator [5.49 h]; Compactor [101.48 h]; Dum Truck Operator [48 h]; Excavator Operator [60.84 h]; Dumper Truck [678.66 h]; Grader [120 h]; Grader Operator [48 h]; Loader [40 h]; Loader Operator [48 h]; Un-Skilled Labor [48 h]; Supervisor [48 h]; Skilled Labor [48 h]; Water Tanker [76.11 h] | 494,994.63 |  |
| SDR-2-CON-RW-ZA-2900 |  | Embankments to the Plot Layer 2 | 21d | 2026-06-15 A | 2026-07-05 A | SDR-2-CON-RW-ZA-2890 | 100% | 2026-10-29 | 2026-11-22 | SIC- Cost; Excavator [5.49 h]; Compactor [95.55 h]; Dum Truck Operator [48 h]; Excavator Operator [60.84 h]; Dumper Truck [179.27 h]; Grader [120 h]; Grader Operator [48 h]; Loader [40 h]; Loader Operator [48 h]; Un-Skilled Labor [48.01 h]; Supervisor [48.01 h]; Skilled Labor [48 h]; Water Tanker [130.28 h] | 494,994.63 |  |
| SDR-2-CON-RW-ZA-1050 |  | Embankments to the Plot Layer 3 | 21d | 2026-07-14 A | 2026-07-21 A | SDR-2-CON-RW-ZA-2900 | 100% | 2026-11-23 | 2026-12-16 | SIC- Cost; Compactor [186.66 h]; Excavator [5.49 h]; Excavator Operator [60.84 h]; Dumper Operator [48 h]; Dumper Truck [178.66 h]; Grader [120 h]; Grader Operator [48 h]; Loader [235.57 h]; Loader Operator [48 h]; Un-Skilled Labor [48.01 h]; Supervisor [48.01 h]; Skilled Labor [48.01 h]; Water Tanker [162.5 h] | 424,281.12 |  |
|  | 2 | **Base Course** |  | 2026-08-31 | 2026-10-01 |  |  |  |  |  |  |  |
| SDR-2-CON-RW-ZA-1070 |  | Aggregate base course layer | 21d | 2026-08-31 A | 2026-10-01 A | SDR-2-PRO-ST-C-1070, SDR-2-CON-RW-ZA-1060 | 100% | 2026-09-09 | 2026-10-04 | SIC- Cost; Compactor [441.57 h]; Dumper Operator [81.48 h]; Dumper Truck [550 h]; Grader [358.86 h]; Grader Operator [81.48 h]; Loader [300 h]; Loader Operator [19.26 h]; Un-Skilled Labor [38.53 h]; Supervisor [9.63 h]; Skilled Labor [38.53 h]; Water Tanker [60 h]; Water Tanker Operator [57.79 h] | 120,755.7 | BAS |

| ID | WBS | Activity | Duration | Start | Finish | Predecessors | Complete | Remaining | Planned start | Planned finish | Total float | Free float | Resources | Cost | ROAD WORK | ZONE A |
| --- | --- | --- | --- | --- | --- | --- | --- | --- | --- | --- | --- | --- | --- | --- | --- | --- |
|  | 8 | **Demolition Work** |  | 2026-10-13 | 2026-10-19 |  |  |  |  |  |  |  |  |  |  |  |
| SDR-2-CON-RW-ZA-1080 |  | Milling of wearing course | 12d | 2026-10-13 A | 2026-10-19 A | SDR-2-CON-RW-ZA-1070 | 100% |  | 2026-10-19 | 2026-11-01 |  |  | SIC- Cost; Un-Skilled Labor [57.32 h]; Supervisor [57.32 h]; Skilled Labor [57.32 h]; Water Tanker [43 h]; Water Tanker Operator [57.32 h]; Road Milling Machine [60 h]; Road Milling Machine Operator [60 h]; Sweeper Machine [43 h]; Sweeper Machine Operator [57.32 h] | 29,076.16 |  |  |
|  | 3 | **Asphalt Works** |  | 2026-10-13 | 2027-02-11 |  |  |  |  |  |  |  |  |  |  |  |
| SDR-2-CON-RW-ZA-1090 |  | Asphalt works 2st Layer with RC-01 | 16d | 2026-10-13 A | 2026-10-19 A | SDR-2-PRO-DES-C-1020 FF, SDR-2-PRO-DES-C-1010, SDR-2-PRO-MAS-C-1020, SDR-2-CON-RW-ZA-1070, SDR-2-CON-RW-ZA-1080, SDR-2-PRO-ST-C-1020 | 100% |  | 2027-01-05 | 2027-01-24 |  |  | SIC- Cost; Compactor [110 h]; Dumper Operator [105.09 h]; Dumper Truck [242.75 h]; Supervisor [105.09 h]; Sweeper Machine [41.38 h]; Sweeper Machine Operator [105.08 h]; Pneumatic Tire Roller [281.82 h]; Pneumatic Roller Operator [105.09 h]; Asphalt Paver [100 h]; Asphalt Paver Operator [105.09 h] | 346,675.96 |  |  |
| SDR-2-CON-RW-ZA-1100 |  | Asphalt works 3nd layer with RC-02 | 21d | 2026-10-22 A | 2027-02-11 | SDR-2-PRO-DES-C-1020, SDR-2-CON-RW-ZA-1090 SS+10d | 30% | 21d | 2027-01-12 | 2027-02-06 | 31.2d | 0d | SIC- Cost; Compactor [80 h]; Dumper Operator [770.58 h]; Dumper Truck [60 h]; Supervisor [9.63 h]; Sweeper Machine [20 h]; Sweeper Machine Operator [19.26 h]; Pneumatic Tire Roller [40 h]; Pneumatic Roller Operator [57.79 h]; Asphalt Paver [40 h]; Asphalt Paver Operator [85.98 h] | 299,796.96 |  |  |
|  | 4 | **Kerbstone Installation** |  | 2026-10-27 | 2027-02-21 |  |  |  |  |  |  |  |  |  |  |  |
| SDR-2-CON-RW-ZA-3400 |  | Kerbstone Installation "all Types" Part1 | 18d | 2026-10-27 A | 2026-12-31 | SDR-2-CON-RW-ZA-1060, SDR-2-PRO-ST-C-1030 | 30% | 18d | 2026-12-12 | 2026-12-31 | 54d | 22.8d | SIC- Cost; Un-Skilled Labor [40.23 h]; Supervisor [40.23 h]; Skilled Labor [40.23 h] | 32,835.82 |  |  |
| SDR-2-CON-RW-ZA-1110 |  | Kerbstone Installation "all Types" Part2 | 21d | 2027-01-27 | 2027-02-21 | SDR-2-CON-CC-ZG-1610, SDR-2-CON-RW-ZA-1100 SS+15d, SDR-2-PRO-ST-C-1010, SDR-2-PRO-MAS-C-1010, SDR-2-PRO-MAS-C-1040, SDR-2-CON-RW-ZA-3400 |  |  |  |  | 31.2d | 29.2d | SIC- Cost; Un-Skilled Labor [40.23 h]; Supervisor [40.23 h]; Skilled Labor [40.23 h] | 254,068.7 |  |  |
|  | 5 | **Interlock Installation** |  | 2027-03-04 | 2027-04-01 |  |  |  |  |  |  |  |  |  |  |  |
| SDR-2-CON-RW-ZA-1120 |  | Interlock Installation | 21d | 2027-03-04 | 2027-04-01 | SDR-2-CON-RW-ZA-1110 SS, SDR-2-PRO-ST-C-1050, SDR-2-PRO-MAS-C-1050, SDR-2-PRO-DES-C-1040 |  |  |  |  | 2d | 0d | SIC- Cost; Un-Skilled Labor [40.23 h]; Supervisor [40.23 h]; Skilled Labor [40.23 h] | 149,308.57 |  |  |
|  | 6 | **Road Marking** |  | 2027-04-03 | 2027-05-04 |  |  |  |  |  |  |  |  |  |  |  |
| SDR-2-CON-RW-ZA-1130 |  | Retroreflective Thermoplastic White Traffic lines | 14d | 2027-04-03 | 2027-04-18 | SDR-2-CON-RW-ZA-1120, SDR-2-PRO-ST-C-1040, SDR-2-PRO-MAS-C-1030, SDR-2-CON-RW-ZA-1050 SS |  |  |  |  | 2d | 0d | SIC- Cost; Un-Skilled Labor [10.06 h]; Supervisor [10.06 h]; Skilled Labor [10.06 h] | 12,688.52 |  |  |
| SDR-2-CON-RW-ZA-1140 |  | Retroreflective Thermoplastic Yellow, Traffic lines | 14d | 2027-04-19 | 2027-05-04 | SDR-2-CON-RW-ZA-1130 |  |  |  |  | 2d | 0d | SIC- Cost [9772.06]; Un-Skilled Labor [10.06 h]; Supervisor [10.06 h]; Skilled Labor [10.06 h] | 9,772.06 |  |  |
|  | 7 | **Traffic Signage** |  | 2027-05-05 | 2027-06-02 |  |  |  |  |  |  |  |  |  |  |  |
| SDR-2-CON-RW-ZA-1150 |  | Single post-Traffic signs Installation | 20d | 2027-05-05 | 2027-06-02 | SDR-2-CON-RW-ZA-1050, SDR-2-CON-RW-ZA-1140, SDR-2-PRO-ST-C-1060, SDR-2-PRO-MAS-C-1060 |  |  |  |  | 2d | 0d | SIC- Cost [5283.72]; Un-Skilled Labor [19.11 h]; Supervisor [19.11 h]; Skilled Labor [19.11 h] | 5,283.73 |  |  |
|  | 8 | **ROAD WORKS IN ( PH2-COL-MC20 )** |  | 2026-04-07 | 2027-05-22 |  |  |  |  |  |  |  |  |  |  |  |
|  | 1 | **Earth Works Road** |  | 2026-04-25 | 2026-07-21 |  |  |  |  |  |  |  |  |  |  |  |
| SDR-2-CON-RW-ZA-1160 |  | Roadway Excavation and cuttings | 20d | 2026-04-25 A | 2026-07-21 A | SDR-2-CON-RW-ZA-1020 SS+4d | 100% |  | 2026-04-16 | 2026-05-09 |  |  | SIC- Cost; Excavator [150 h]; Excavator Operator [143.3 h]; Dumper Operator [143.3 h]; Dumper Truck [650 h]; Grader [150 h]; Grader Operator [143.3 h]; Loader [150 h]; Loader Operator [143.3 h]; Un-Skilled Labor [143.3 h]; Supervisor [143.3 h]; Skilled Labor [143.3 h] | 23,081.48 | CUT | Z A |
|  | 10 | **Backfilling Works** |  | 2026-04-07 | 2026-06-13 |  |  |  |  |  |  |  |  |  |  |  |
| SDR-2-CON-RW-ZA-2910 |  | Embankments to the Road Layer 1 | 21d | 2026-04-07 A | 2026-05-23 A | SDR-2-CON-RW-ZA-1160, SDR-2-PRO-DES-E-1000 | 100% |  | 2026-05-25 | 2026-06-22 |  |  | SIC- Cost; Compactor [100 h]; Compactor Operator [25.14 h]; Excavator [5 h]; Excavator Operator [25.14 h]; Dumper Operator [203.01 h]; Dumper Truck [212.5 h]; Grader [246.19 h]; Grader Operator [203.01 h]; Loader [100 h]; Loader Operator [72 h]; Un-Skilled Labor [54.5 h]; Supervisor [23.6 h]; Skilled Labor [54.5 h]; Water Tanker [163.12 h] | 98,999.81 | BF | Z A |
| SDR-2-CON-RW-ZA-2920 |  | Embankments to the Road Layer 2 | 21d | 2026-05-05 A | 2026-05-23 A | SDR-2-CON-RW-ZA-2910 | 100% |  | 2026-06-23 | 2026-07-16 |  |  | SIC- Cost; Compactor [365.71 h]; Compactor Operator [25.14 h]; Excavator [5 h]; Excavator Operator [25.14 h]; Dumper Operator [203.01 h]; Dumper Truck [212.5 h]; Grader [120 h]; Grader Operator [203.01 h]; Loader [80 h]; Loader Operator [82.08 h]; Un-Skilled Labor [120.24 h]; Supervisor [45.57 h]; Skilled Labor [45.57 h]; Water Tanker [200.48 h] | 113,141.61 | BF | Z A |
| SDR-2-CON-RW-ZA-2930 |  | Embankments to the Road Layer 3 | 21d | 2026-05-23 A | 2026-06-03 A | SDR-2-CON-RW-ZA-2920 | 100% |  | 2026-07-18 | 2026-08-10 |  |  | SIC- Cost; Compactor [359.52 h]; Compactor Operator [25.14 h]; Excavator [5 h]; Excavator Operator [25.14 h]; Dumper Operator [203.01 h]; Dumper Truck [212.5 h]; Grader [120 h]; Grader Operator [203.01 h]; Loader [80 h]; Loader Operator [203.01 h]; Un-Skilled Labor [115.59 h]; Supervisor [38.53 h]; Skilled Labor [115.59 h]; Water Tanker [163.12 h] | 410,138.34 | BF | Z A |
| SDR-2-CON-RW-ZA-1170 |  | Embankments to the Road Layer 4 | 21d | 2026-06-04 A | 2026-06-13 A | SDR-2-CON-RW-ZA-2930 FS+1d | 100% |  | 2026-08-12 | 2026-09-05 |  |  | SIC- Cost; Compactor [100 h]; Compactor Operator [25.14 h]; Excavator [5 h]; Excavator Operator [25.14 h]; Dumper Operator [203.01 h]; Dumper Truck [212.5 h]; Grader [96.43 h]; Grader Operator [93.43 h]; Loader [80 h]; Loader Operator [77.06 h]; Un-Skilled Labor [115.59 h]; Supervisor [38.53 h]; Skilled Labor [115.59 h]; Water Tanker [163.12 h] | 791,991.28 | BF | Z A |
|  | 11 | **Subgrade** |  | 2026-09-03 | 2026-09-24 |  |  |  |  |  |  |  |  |  |  |  |
| SDR-2-CON-RW-ZA-1180 |  | Subgrade layer works | 21d | 2026-09-03 A | 2026-09-24 A | SDR-2-CON-RW-ZA-1170 | 100% |  | 2026-09-06 | 2026-09-30 |  |  | SIC- Cost; Compactor [414.29 h]; Excavator [6 h]; Excavator Operator [5.78 h]; Dumper Operator [81.48 h]; Dumper Truck [550 h]; Grader [160 h]; Grader Operator [57.79 h]; Loader [20 h]; Loader Operator [81.48 h]; Un-Skilled Labor [38.53 h]; Supervisor [9.63 h]; Skilled Labor [38.53 h]; Water Tanker [60 h]; Water Tanker Operator [57.79 h] | 428,830.75 | SUB | Z A |

| ID | WBS | Activity | Duration | Start | Finish | Predecessors | Complete | Remaining | Planned start | Planned finish | Total float | Free float | Resources | Cost | ZONE A | ROAD WORK |
| --- | --- | --- | --- | --- | --- | --- | --- | --- | --- | --- | --- | --- | --- | --- | --- | --- |
|  | 9 | **Earth Works Plot** |  | 2026-06-08 | 2026-07-26 |  |  |  |  |  |  |  |  |  |  |  |
| SDR-2-CON-RW-ZA-2940 |  | Embankments to the Plot 1 Layer | 21d | 2026-06-08 A | 2026-06-15 A | SDR-2-CON-RW-ZA-1170, SDR-2-CON-RW-ZA-1190 | 100% |  | 2026-10-26 | 2026-11-18 |  |  | SIC- Cost; Excavator [5.33 h]; Excavator Operator [27.16 h]; Dumper Operator [27.16 h]; Dumper Truck [403.72 h]; Grader [60.22 h]; Grader Operator [27.16 h]; Loader [20.22 h]; Loader Operator [27.16 h]; Un-Skilled Labor [27.16 h]; Supervisor [27.16 h]; Skilled Labor [27.16 h]; Water Tanker [40.79 h] | 176,936.15 | Z A |  |
| SDR-2-CON-RW-ZA-2950 |  | Embankments to the Plot 2 Layer | 21d | 2026-06-15 A | 2026-06-27 A | SDR-2-CON-RW-ZA-2940 | 100% |  | 2026-11-19 | 2026-12-13 |  |  | SIC- Cost; Excavator [5.33 h]; Excavator Operator [27.16 h]; Dumper Operator [27.16 h]; Dumper Truck [67.14 h]; Grader [68.48 h]; Grader Operator [27.16 h]; Loader [48.48 h]; Loader Operator [27.16 h]; Un-Skilled Labor [27.16 h]; Supervisor [27.16 h]; Skilled Labor [27.16 h]; Water Tanker [148.75 h] | 176,936.15 | Z A |  |
| SDR-2-CON-RW-ZA-1200 |  | Embankments to the Plot 3 Layer | 21d | 2026-07-04 A | 2026-07-14 A | SDR-2-CON-RW-ZA-2950 | 100% |  | 2026-12-14 | 2027-01-06 |  |  | SIC- Cost; Excavator [5.33 h]; Excavator Operator [27.16 h]; Dumper Operator [27.16 h]; Dumper Truck [357.81 h]; Grader [120 h]; Grader Operator [27.16 h]; Loader [357.66 h]; Loader Operator [27.16 h]; Un-Skilled Labor [27.16 h]; Supervisor [27.16 h]; Skilled Labor [27.16 h]; Water Tanker [148.75 h] | 172,981.52 | Z A |  |
| SDR-2-CON-RW-ZA-1190 |  | Plot Excavation for cuttings (all types of soil) | 21d | 2026-07-14 A | 2026-07-26 A | SDR-2-CON-RW-ZA-1160, SDR-2-CON-RW-ZA-1180 SS | 100% |  | 2026-10-01 | 2026-10-25 |  |  | SIC- Cost; Excavator [13 h]; Excavator Operator [95.54 h]; Dumper Operator [95.54 h]; Dumper Truck [450 h]; Grader [160 h]; Grader Operator [57.79 h]; Loader [118.12 h]; Loader Operator [19.26 h]; Un-Skilled Labor [38.53 h]; Supervisor [9.63 h]; Skilled Labor [38.53 h] | 231,343.78 | Z A |  |
|  | 2 | **Base Course** |  | 2026-09-26 | 2026-10-15 |  |  |  |  |  |  |  |  |  |  |  |
| SDR-2-CON-RW-ZA-1210 |  | Aggregate base course layer | 19d | 2026-09-26 A | 2026-10-15 A | SDR-2-CON-RW-ZA-1180 | 100% |  | 2026-09-28 | 2026-10-19 |  |  | SIC- Cost [20]; Compactor [160 h]; Dumper Operator [81.48 h]; Dumper Truck [250 h]; Grader [130 h]; Grader Operator [81.48 h]; Loader [41.75 h]; Loader Operator [81.48 h]; Un-Skilled Labor [81.48 h]; Supervisor [81.48 h]; Skilled Labor [81.48 h]; Water Tanker [160 h]; Water Tanker Operator [81.48 h] | 120,755.7 | Z A | BAS |
|  | 8 | **Demolition Work** |  | 2026-10-15 | 2026-10-17 |  |  |  |  |  |  |  |  |  |  |  |
| SDR-2-CON-RW-ZA-1220 |  | Milling of wearing course | 6d | 2026-10-15 A | 2026-10-17 A | SDR-2-CON-RW-ZA-1210 | 100% |  | 2026-10-19 | 2026-10-25 |  |  | SIC- Cost; Un-Skilled Labor [57.32 h]; Supervisor [57.32 h]; Skilled Labor [57.32 h]; Water Tanker [120 h]; Water Tanker Operator [57.32 h]; Road Milling Machine [100 h]; Road Milling Machine Operator [60 h]; Sweeper Machine [60 h]; Sweeper Machine Operator [57.32 h] | 29,076.6 | Z A |  |
|  | 3 | **Asphalt Works** |  | 2026-10-18 | 2026-12-23 |  |  |  |  |  |  |  |  |  |  |  |
| SDR-2-CON-RW-ZA-1230 |  | Asphalt works 1st Layer with MC-01 | 9d | 2026-10-18 A | 2026-11-10 | SDR-2-CON-RW-ZA-1210, SDR-2-CON-RW-ZA-1220 | 95% | 9d | 2026-10-19 | 2026-10-28 | 47d | 0d | SIC- Cost; Compactor [252.27 h]; Dumper Operator [57.28 h]; Dumper Truck [227.27 h]; Supervisor [57.32 h]; Sweeper Machine [140 h]; Sweeper Machine Operator [57.32 h]; Pneumatic Tire Roller [305.25 h]; Pneumatic Roller Operator [57.32 h]; Asphalt Paver [119.52 h]; Asphalt Paver Operator [57.32 h] | 321,275.73 | Z A | ASP |
| SDR-2-CON-RW-ZA-1240 |  | Asphalt works 2nd layer with RC-01 | 18d | 2026-11-11 | 2026-12-01 | SDR-2-CON-RW-ZA-1230 |  |  |  |  | 47d | 0d | SIC- Cost; Compactor [60 h]; Dumper Operator [57.32 h]; Dumper Truck [60 h]; Supervisor [57.32 h]; Sweeper Machine [40 h]; Sweeper Machine Operator [57.32 h]; Pneumatic Tire Roller [40 h]; Pneumatic Roller Operator [57.32 h]; Asphalt Paver; Asphalt Paver Operator [57.32 h] | 160,637.87 | Z A |  |
| SDR-2-CON-RW-ZA-2840 |  | Asphalt Works 3 rd Layer with RC-02 | 19d | 2026-12-02 | 2026-12-23 | SDR-2-CON-RW-ZA-1240 |  |  |  |  | 47d | 40d | SIC- Cost; Compactor [40 h]; Dum Truck Operator [40.23 h]; Dumper Truck [40 h]; Supervisor [20.11 h]; Sweeper Machine [60 h]; Sweeper Machine Operator [30.17 h]; Pneumatic Tire Roller [97 h]; Pneumatic Roller Operator [40.23 h]; Asphalt Paver [23 h]; Asphalt Paver Operator [23.13 h] | 321,275.73 | Z A |  |
|  | 4 | **Kerbstone Installation** |  | 2027-01-19 | 2027-03-06 |  |  |  |  |  |  |  |  |  |  |  |
| SDR-2-CON-RW-ZA-3410 |  | Kerbstone Installation "all Types" Part 1 | 18d | 2027-01-19 | 2027-02-08 | SDR-2-CON-RW-ZA-1180, SDR-2-PRO-ST-C-1100 |  |  |  |  | 7d | 0d | SIC- Cost; Un-Skilled Labor [10.06 h]; Supervisor [10.06 h]; Skilled Labor [10.06 h] | 32,835.82 | Z A |  |
| SDR-2-CON-RW-ZA-1250 |  | Kerbstone Installation "all Types" Part 2 | 21d | 2027-02-09 | 2027-03-06 | SDR-2-CON-RW-ZA-2840, SDR-2-CON-RW-ZA-3410 |  |  |  |  | 7d | 0d | SIC- Cost; Un-Skilled Labor [10.06 h]; Supervisor [10.06 h]; Skilled Labor [10.06 h] | 254,068.7 | Z A |  |
|  | 5 | **Interlock Installation** |  | 2027-03-07 | 2027-04-04 |  |  |  |  |  |  |  |  |  |  |  |
| SDR-2-CON-RW-ZA-1260 |  | Interlock Installation | 21d | 2027-03-07 | 2027-04-04 | SDR-2-CON-RW-ZA-1250 |  |  |  |  | 7d | 0d | SIC- Cost; Un-Skilled Labor [40.23 h]; Supervisor [40.23 h]; Skilled Labor [40.23 h] | 149,308.57 | Z A |  |
|  | 6 | **Road Marking** |  | 2027-04-05 | 2027-04-25 |  |  |  |  |  |  |  |  |  |  |  |
| SDR-2-CON-RW-ZA-1270 |  | Retroreflective Thermoplastic White Traffic lines | 11d | 2027-04-05 | 2027-04-17 | SDR-2-CON-RW-ZA-1260 |  |  |  |  | 7d | 0d | SIC- Cost; Un-Skilled Labor [10.06 h]; Supervisor [10.06 h]; Skilled Labor [10.06 h] | 12,688.52 | Z A |  |
| SDR-2-CON-RW-ZA-1280 |  | Retroreflective Thermoplastic Yellow, Traffic lines | 7d | 2027-04-18 | 2027-04-25 | SDR-2-CON-RW-ZA-1270 |  |  |  |  | 7d | 0d | SIC- Cost [9772.06]; Un-Skilled Labor [10.06 h]; Supervisor [10.06 h]; Skilled Labor [10.06 h] | 9,772.06 | Z A |  |
|  | 7 | **Traffic Signage** |  | 2027-04-26 | 2027-05-22 |  |  |  |  |  |  |  |  |  |  |  |
| SDR-2-CON-RW-ZA-1290 |  | Single post-Traffic signs Installation | 18d | 2027-04-26 | 2027-05-22 | SDR-2-CON-RW-ZA-1280 |  |  |  |  | 7d | 6d | SIC- Cost [5283.72]; Un-Skilled Labor [19.11 h]; Supervisor [19.11 h]; Skilled Labor [19.11 h] | 5,283.73 | Z A |  |
|  | 13 | **ROAD WORKS IN ( PH2-A-MCI0 )** |  | 2026-04-28 | 2027-05-12 |  |  |  |  |  |  |  |  |  |  |  |
|  | 1 | **Earth Works Road** |  | 2026-04-28 | 2026-05-20 |  |  |  |  |  |  |  |  |  |  |  |
| SDR-2-CON-RW-ZA-1300 |  | Roadway Excavation and cuttings | 20d | 2026-04-28 A | 2026-05-20 A | SDR-2-CON-RW-ZA-1160 SS+4d | 100% |  | 2026-04-21 | 2026-05-13 |  |  | SIC- Cost [1563524]; Excavator [20 h]; Excavator Operator [143.3 h]; Dumper Operator [143.3 h]; Dumper Truck [680 h]; Grader [500 h]; Grader Operator [143.3 h]; Loader [162 h]; Loader Operator [143.3 h]; Un-Skilled Labor [143.3 h]; Supervisor [143.3 h]; Skilled Labor [143.3 h] | 23,081.48 | Z A | CUT |

| ID | WBS | Activity | Duration | Start | Finish | Predecessors | Complete | Remaining | Planned start | Planned finish | Total float | Free float | Resources | Cost | ROAD WORK | ZONE A |
| --- | --- | --- | --- | --- | --- | --- | --- | --- | --- | --- | --- | --- | --- | --- | --- | --- |
|  | 10 | **Backfilling Works** |  | 2026-04-29 | 2026-06-14 |  |  |  |  |  |  |  |  |  |  |  |
| SDR-2-CON-RW-ZA-2960 |  | Embankments to the Road 1 Layer | 21d | 2026-04-29 A | 2026-05-07 A | SDR-2-CON-RW-ZA-1300 | 100% |  | 2026-05-14 | 2026-06-11 |  |  | SIC- Cost; Compactor [100 h]; Excavator [11.18 h]; Excavator Operator [92.16 h]; Dumper Operator [203.01 h]; Dumper Truck [208.25 h]; Grader [100 h]; Grader Operator [203.01 h]; Loader [42.02 h]; Loader Operator [203.02 h]; Un-Skilled Labor [15.83 h]; Supervisor [12.14 h]; Skilled Labor [15.83 h]; Water Tanker [138.75 h] | 98,998.93 | BF | Z A |
| SDR-2-CON-RW-ZA-2970 |  | Embankments to the Road 2 Layer | 21d | 2026-05-07 A | 2026-05-14 A | SDR-2-CON-RW-ZA-2960 | 100% |  | 2026-06-13 | 2026-07-06 |  |  | SIC- Cost; Compactor [100 h]; Excavator [11.18 h]; Excavator Operator [61.93 h]; Dumper Operator [203.01 h]; Dumper Truck [208.25 h]; Grader [100 h]; Grader Operator [203.01 h]; Loader [52.14 h]; Loader Operator [72 h]; Un-Skilled Labor [158.91 h]; Supervisor [61.94 h]; Skilled Labor [55.45 h]; Water Tanker [138.75 h] | 113,141.63 | BF | Z A |
| SDR-2-CON-RW-ZA-2980 |  | Embankments to the Road 3 Layer | 21d | 2026-06-01 A | 2026-06-09 A | SDR-2-CON-RW-ZA-2970 FS+1d | 100% |  | 2026-07-08 | 2026-08-01 |  |  | SIC- Cost; Compactor [610 h]; Excavator [11.18 h]; Excavator Operator [203.01 h]; Dumper Operator [203.01 h]; Dumper Truck [208.25 h]; Grader [100 h]; Grader Operator [203.01 h]; Loader [80 h]; Loader Operator [77.06 h]; Un-Skilled Labor [115.59 h]; Supervisor [38.53 h]; Skilled Labor [115.59 h]; Water Tanker [138.75 h] | 410,138.42 | BF | Z A |
| SDR-2-CON-RW-ZA-1310 |  | Embankments to the Road 4 Layer | 21d | 2026-06-09 A | 2026-06-14 A | SDR-2-CON-RW-ZA-2980 | 100% |  | 2026-08-02 | 2026-08-25 |  |  | SIC- Cost; Compactor [100 h]; Excavator [11.18 h]; Excavator Operator [137.14 h]; Dumper Operator [203.01 h]; Dumper Truck [360.71 h]; Grader [100 h]; Grader Operator [203.01 h]; Loader [60 h]; Loader Operator [203.01 h]; Un-Skilled Labor [203.02 h]; Supervisor [203.02 h]; Skilled Labor [203.01 h]; Water Tanker [138.75 h] | 791,991.42 | BF | Z A |
|  | 11 | **Subgrade** |  | 2026-10-05 | 2026-11-23 |  |  |  |  |  |  |  |  |  |  |  |
| SDR-2-CON-RW-ZA-1320 |  | Subgrade layer works | 20d | 2026-10-05 A | 2026-11-23 | SDR-2-CON-RW-ZA-1310 | 30% | 20d | 2026-10-05 | 2026-10-27 | 6d | 0d | SIC- Cost; Excavator [6 h]; Excavator Operator [81.48 h]; Dumper Operator [81.48 h]; Dumper Truck [224 h]; Grader [125.8 h]; Grader Operator [57.79 h]; Loader [20 h]; Loader Operator [81.48 h]; Un-Skilled Labor [38.53 h]; Supervisor [9.63 h]; Skilled Labor [38.53 h]; Water Tanker [30 h]; Water Tanker Operator [28.9 h] | 578,084.48 | SUB | Z A |
|  | 9 | **Earth Works Plot** |  | 2026-06-08 | 2026-07-20 |  |  |  |  |  |  |  |  |  |  |  |
| SDR-2-CON-RW-ZA-2990 |  | Embankments to the Plot 1 Layer | 21d | 2026-06-08 A | 2026-06-15 A | SDR-2-CON-RW-ZA-1310, SDR-2-CON-RW-ZA-1330 | 100% |  | 2026-10-14 | 2026-11-07 |  |  | SIC- Cost; Compactor [150 h]; Excavator [10 h]; Excavator Operator [40.74 h]; Dumper Operator [40.74 h]; Dumper Truck [58.89 h]; Grader [120 h]; Grader Operator [40.74 h]; Loader [29.74 h]; Loader Operator [40.74 h]; Un-Skilled Labor [40.74 h]; Supervisor [40.74 h]; Skilled Labor [40.74 h]; Water Tanker [64.64 h] | 188,800.06 |  | Z A |
| SDR-2-CON-RW-ZA-1340 |  | Embankments to the Plot 2 Layer | 21d | 2026-06-15 A | 2026-06-27 A | SDR-2-CON-RW-ZA-2990 FS+4d | 100% |  | 2026-11-12 | 2026-12-06 |  |  | SIC- Cost; Compactor [60 h]; Excavator [10 h]; Excavator Operator [40.74 h]; Dumper Operator [40.74 h]; Dumper Truck [300.72 h]; Grader [321.43 h]; Grader Operator [40.74 h]; Loader [100 h]; Loader Operator [40.74 h]; Un-Skilled Labor [40.74 h]; Supervisor [40.74 h]; Skilled Labor [40.74 h]; Water Tanker [658.62 h] | 188,800.06 |  | Z A |
| SDR-2-CON-RW-ZA-1330 |  | Plot Excavation for cuttings (all types of soil) | 21d | 2026-07-13 A | 2026-07-20 A | SDR-2-CON-RW-ZA-1300 | 100% |  | 2026-09-19 | 2026-10-13 |  |  | SIC- Cost [82090]; Excavator [12.6 h]; Excavator Operator [95.54 h]; Dumper Operator [95.54 h]; Dumper Truck [60 h]; Grader [60 h]; Grader Operator [81.48 h]; Loader [40 h]; Loader Operator [95.54 h]; Un-Skilled Labor [81.48 h]; Supervisor [81.48 h]; Skilled Labor [81.48 h] | 231,343.78 |  | Z A |
|  | 2 | **Base Course** |  | 2026-11-24 | 2026-12-16 |  |  |  |  |  |  |  |  |  |  |  |
| SDR-2-CON-RW-ZA-1350 |  | Aggregate base course layer | 20d | 2026-11-24 | 2026-12-16 | SDR-2-CON-RW-ZA-1320 |  |  |  |  | 6d | 0d | SIC- Cost [120756]; Compactor [419 h]; Dumper Operator [40.74 h]; Dumper Truck [30 h]; Grader [30 h]; Grader Operator [40.74 h]; Loader [30 h]; Loader Operator [40.74 h]; Un-Skilled Labor [40.74 h]; Supervisor [40.74 h]; Skilled Labor [40.74 h]; Water Tanker [30 h]; Water Tanker Operator [40.74 h] | 120,755.7 | BAS | Z A |
|  | 8 | **Demolition Work** |  | 2026-12-17 | 2026-12-22 |  |  |  |  |  |  |  |  |  |  |  |
| SDR-2-CON-RW-ZA-1360 |  | Milling of wearing course | 5d | 2026-12-17 | 2026-12-22 | SDR-2-CON-RW-ZA-1350, SDR-2-CON-RW-ZA-1190 |  |  |  |  | 6d | 0d | SIC- Cost; Un-Skilled Labor [57.32 h]; Supervisor [57.32 h]; Skilled Labor [57.32 h]; Water Tanker [60 h]; Water Tanker Operator [57.32 h]; Road Milling Machine [80 h]; Road Milling Machine Operator [30 h]; Sweeper Machine [30 h]; Sweeper Machine Operator [57.32 h] | 29,076.6 |  | Z A |
|  | 3 | **Asphalt Works** |  | 2026-12-23 | 2027-01-21 |  |  |  |  |  |  |  |  |  |  |  |
| SDR-2-CON-RW-ZA-1370 |  | Asphalt works 1st Layer with MC-01 | 5d | 2026-12-23 | 2026-12-28 | SDR-2-CON-RW-ZA-1350, SDR-2-CON-RW-ZA-1360 |  |  |  |  | 6d | 0d | SIC- Cost [503392]; Compactor [90 h]; Dumper Operator [85.98 h]; Dumper Truck [90 h]; Supervisor [85.98 h]; Sweeper Machine [347.71 h]; Sweeper Machine Operator [85.98 h]; Pneumatic Tire Roller [300 h]; Pneumatic Roller Operator [85.98 h]; Asphalt Paver [283.3 h]; Asphalt Paver Operator [85.98 h] | 503,392.37 | ASP | Z A |
| SDR-2-CON-RW-ZA-1380 |  | Asphalt works 2nd layer with RC-02 | 21d | 2026-12-29 | 2027-01-21 | SDR-2-CON-RW-ZA-1370 |  |  |  |  | 6d | 0d | SIC- Cost [20]; Dumper Operator [85.98 h]; Dumper Truck [90 h]; Supervisor [20.11 h]; Sweeper Machine [90 h]; Sweeper Machine Operator [45.26 h]; Pneumatic Tire Roller [57.75 h]; Pneumatic Roller Operator [45.26 h]; Asphalt Paver [23.88 h]; Asphalt Paver Operator [45.26 h] | 299,796.96 |  | Z A |
|  | 4 | **Kerbstone Installation** |  | 2026-11-01 | 2027-02-15 |  |  |  |  |  |  |  |  |  |  |  |
| SDR-2-CON-RW-ZA-3420 |  | Kerbstone Installation "all Types" Part 1 | 18d | 2026-11-01 | 2026-11-21 | SDR-2-CON-RW-ZA-1320 SS+8d |  |  |  |  | 20d | 1d | SIC- Cost; Un-Skilled Labor [20.11 h]; Supervisor [20.11 h]; Skilled Labor [60.34 h] | 32,835.82 |  | Z A |
| SDR-2-CON-RW-ZA-1390 |  | Kerbstone Installation "all Types" Part 2 | 21d | 2027-01-23 | 2027-02-15 | SDR-2-CON-RW-ZA-1380 |  |  |  |  | 6d | 0d | SIC- Cost; Un-Skilled Labor [20.11 h]; Supervisor [20.11 h]; Skilled Labor [60.34 h] | 254,068.7 |  | Z A |
|  | 5 | **Interlock Installation** |  | 2027-02-16 | 2027-03-17 |  |  |  |  |  |  |  |  |  |  |  |
| SDR-2-CON-RW-ZA-1400 |  | Interlock Installation | 21d | 2027-02-16 | 2027-03-17 | SDR-2-CON-RW-ZA-1390 |  |  |  |  | 6d | 0d | SIC- Cost; Un-Skilled Labor [60.34 h]; Supervisor [40.23 h]; Skilled Labor [60.34 h] | 149,308.57 |  | Z A |
|  | 6 | **Road Marking** |  | 2027-03-18 | 2027-04-19 |  |  |  |  |  |  |  |  |  |  |  |
| SDR-2-CON-RW-ZA-1410 |  | Retroreflective Thermoplastic White Traffic lines | 14d | 2027-03-18 | 2027-04-03 | SDR-2-CON-RW-ZA-1400 |  |  |  |  | 6d | 0d | SIC- Cost [12688.5]; Un-Skilled Labor [19.11 h]; Supervisor [10.06 h]; Skilled Labor [19.11 h] | 12,688.52 |  | Z A |
| SDR-2-CON-RW-ZA-1420 |  | Retroreflective Thermoplastic Yellow, Traffic lines | 14d | 2027-04-04 | 2027-04-19 | SDR-2-CON-RW-ZA-1410 |  |  |  |  | 6d | 0d | SIC- Cost [9772.06]; Un-Skilled Labor [28.66 h]; Supervisor [28.66 h]; Skilled Labor [28.66 h] | 9,772.06 |  | Z A |

| ID | WBS | Activity | Duration | Start | Finish | Predecessors | Complete | Remaining | Planned start | Planned finish | Total float | Free float | Resources | Cost | ZONE A | ROAD WORK |
| --- | --- | --- | --- | --- | --- | --- | --- | --- | --- | --- | --- | --- | --- | --- | --- | --- |
|  | 7 | **Traffic Signage** |  | 2027-04-20 | 2027-05-12 |  |  |  |  |  |  |  |  |  |  |  |
| SDR-2-CON-RW-ZA-1430 |  | Single post-Traffic signs Installation | 20d | 2027-04-20 | 2027-05-12 | SDR-2-CON-RW-ZA-1420, SDR-2-CON-RW-ZA-1340, SDR-2-CON-RW-ZA-1200 |  |  |  |  | 6d | 0d | SIC- Cost [5283.72]; Un-Skilled Labor [19.11 h]; Supervisor [19.11 h]; Skilled Labor [19.11 h] | 5,283.73 | Z A |  |
|  | 2 | **ROAD WORKS IN ( PH2-A-MCA0 )** |  | 2026-04-22 | 2027-05-02 |  |  |  |  |  |  |  |  |  |  |  |
|  | 1 | **Earth Works Road** |  | 2026-04-22 | 2026-05-03 |  |  |  |  |  |  |  |  |  |  |  |
| SDR-2-CON-RW-ZA-1440 |  | Roadway Excavation and cuttings | 20d | 2026-04-22 A | 2026-05-03 A | SDR-2-CON-RW-ZA-1300 SS+4d | 100% |  | 2026-04-26 | 2026-05-18 |  |  | SIC- Cost [1563524]; Excavator [30 h]; Excavator Operator [143.3 h]; Dumper Operator [143.3 h]; Dumper Truck [310 h]; Grader [180 h]; Grader Operator [143.3 h]; Loader [433.8 h]; Loader Operator [143.3 h]; Un-Skilled Labor [128.98 h]; Supervisor [143.3 h]; Skilled Labor [128.98 h] | 23,081.48 | Z A | CUT |
|  | 10 | **Backfilling Works** |  | 2026-05-03 | 2026-06-06 |  |  |  |  |  |  |  |  |  |  |  |
| SDR-2-CON-RW-ZA-3000 |  | Embankments to the Road 1 Layer | 21d | 2026-05-03 A | 2026-05-10 A | SDR-2-CON-RW-ZA-1440 | 100% |  | 2026-05-19 | 2026-06-16 |  |  | SIC- Cost; Compactor [100 h]; Excavator [8.68 h]; Excavator Operator [132.47 h]; Dumper Operator [203.01 h]; Dumper Truck [212.5 h]; Grader [100 h]; Grader Operator [203.01 h]; Loader [69.52 h]; Loader Operator [203.01 h]; Un-Skilled Labor [10.03 h]; Supervisor [10.03 h]; Skilled Labor [10.03 h]; Water Tanker [163.5 h] | 109,446.69 | Z A | BF |
| SDR-2-CON-RW-ZA-3010 |  | Embankments to the Road 2 Layer | 21d | 2026-05-11 A | 2026-05-19 A | SDR-2-CON-RW-ZA-3000, SDR-2-PRO-DES-E-1010 | 100% |  | 2026-06-17 | 2026-07-11 |  |  | SIC- Cost; Compactor [100 h]; Excavator [8.68 h]; Excavator Operator [82.09 h]; Dumper Operator [203.01 h]; Dumper Truck [212.5 h]; Grader [100 h]; Grader Operator [203.01 h]; Loader [74.29 h]; Loader Operator [72.24 h]; Un-Skilled Labor [116.81 h]; Supervisor [38.53 h]; Skilled Labor [79.89 h]; Water Tanker [163.5 h] | 125,081.93 | Z A | BF |
| SDR-2-CON-RW-ZA-3020 |  | Embankments to the Road 3 Layer | 21d | 2026-05-19 A | 2026-05-24 A | SDR-2-CON-RW-ZA-3010 | 100% |  | 2026-07-12 | 2026-08-04 |  |  | SIC- Cost; Compactor [100 h]; Excavator [8.68 h]; Excavator Operator [203.01 h]; Dumper Operator [203.01 h]; Dumper Truck [212.5 h]; Grader [100 h]; Grader Operator [203.01 h]; Loader [81.9 h]; Loader Operator [203.01 h]; Un-Skilled Labor [203.02 h]; Supervisor [203.02 h]; Skilled Labor [203.01 h]; Water Tanker [163.5 h] | 453,422 | Z A | BF |
| SDR-2-CON-RW-ZA-1450 |  | Embankments to the Road 4 Layer | 21d | 2026-05-24 A | 2026-06-06 A | SDR-2-CON-RW-ZA-3000 SS, SDR-2-CON-RW-ZA-3020 FS+1d | 100% |  | 2026-08-06 | 2026-08-30 |  |  | SIC- Cost; Compactor [100 h]; Excavator [8.68 h]; Excavator Operator [203.01 h]; Dumper Operator [203.01 h]; Dumper Truck [212.5 h]; Grader [100 h]; Grader Operator [203.01 h]; Loader [100 h]; Loader Operator [203.01 h]; Un-Skilled Labor [203.01 h]; Supervisor [203.01 h]; Skilled Labor [203.01 h]; Water Tanker [163.5 h] | 875,573.51 | Z A | BF |
|  | 11 | **Subgrade** |  | 2026-09-01 | 2026-11-04 |  |  |  |  |  |  |  |  |  |  |  |
| SDR-2-CON-RW-ZA-1460 |  | Subgrade layer works | 21d | 2026-09-01 A | 2026-11-04 | SDR-2-CON-RW-ZA-1450 | 50% | 4d | 2026-08-31 | 2026-09-24 | 19d | 0d | SIC- Cost; Compactor [150 h]; Excavator [6 h]; Excavator Operator [38.53 h]; Dumper Operator [60.68 h]; Dumper Truck [259 h]; Grader [160 h]; Grader Operator [57.79 h]; Loader [20 h]; Loader Operator [19.26 h]; Un-Skilled Labor [57.79 h]; Supervisor [9.63 h]; Skilled Labor [57.79 h]; Water Tanker [140 h]; Water Tanker Operator [38.53 h] | 1,025,845.67 | Z A | SUB |
|  | 9 | **Earth Works Plot** |  | 2026-06-04 | 2026-11-29 |  |  |  |  |  |  |  |  |  |  |  |
| SDR-2-CON-RW-ZA-3030 |  | Embankments to the Plot 1 Layer | 21d | 2026-06-04 A | 2026-06-14 A | SDR-2-CON-RW-ZA-1330 | 100% |  | 2026-10-20 | 2026-11-12 |  |  | SIC- Cost; Compactor [81.43 h]; Excavator [14.7 h]; Excavator Operator [81.48 h]; Dumper Operator [81.48 h]; Dumper Truck [60 h]; Grader [60 h]; Grader Operator [81.48 h]; Loader [39.47 h]; Loader Operator [81.48 h]; Un-Skilled Labor [81.48 h]; Supervisor [81.48 h]; Skilled Labor [81.48 h]; Water Tanker [89.29 h] | 39,546.33 | Z A |  |
| SDR-2-CON-RW-ZA-1470 |  | Plot Excavation for cuttings (all types of soil) | 21d | 2026-09-30 A | 2026-11-29 | SDR-2-CON-RW-ZA-1440, SDR-2-CON-RW-ZA-1460 | 60% | 21d | 2026-10-10 | 2026-11-02 | 22d | 17d | SIC- Cost [82090]; Excavator [13.4 h]; Excavator Operator [95.54 h]; Dumper Operator [95.54 h]; Dumper Truck [100 h]; Grader [100 h]; Grader Operator [95.54 h]; Loader [306.1 h]; Loader Operator [95.54 h]; Un-Skilled Labor [95.54 h]; Supervisor [95.54 h]; Skilled Labor [95.54 h] | 82,090.04 | Z A |  |
| SDR-2-CON-RW-ZA-1480 |  | Embankments to the Plot 2 Layer | 21d | 2026-11-01 | 2026-11-24 | SDR-2-CON-RW-ZA-3030 |  |  |  |  | 41d | 36d | SIC- Cost; Compactor [60 h]; Excavator [14.7 h]; Excavator Operator [81.48 h]; Dumper Operator [81.48 h]; Dumper Truck [301.84 h]; Grader [60 h]; Grader Operator [81.48 h]; Loader [100 h]; Loader Operator [81.48 h]; Un-Skilled Labor [81.48 h]; Supervisor [81.48 h]; Skilled Labor [81.48 h]; Water Tanker [648.2 h] | 39,546.33 | Z A |  |
|  | 2 | **Base Course** |  | 2026-10-20 | 2026-11-22 |  |  |  |  |  |  |  |  |  |  |  |
| SDR-2-CON-RW-ZA-1490 |  | Aggregate base course layer | 15d | 2026-10-20 A | 2026-11-22 | SDR-2-CON-RW-ZA-1460 | 25% | 15d | 2026-11-05 | 2026-11-22 | 19d | 0d | SIC- Cost [120756]; Compactor [140 h]; Dumper Operator [81.48 h]; Dumper Truck [60 h]; Grader [60 h]; Grader Operator [81.48 h]; Loader [60 h]; Loader Operator [81.48 h]; Un-Skilled Labor [81.48 h]; Supervisor [81.48 h]; Skilled Labor [81.48 h]; Water Tanker [121.43 h]; Water Tanker Operator [133.75 h] | 120,755.4 | Z A | BAS |
|  | 8 | **Demolition Work** |  | 2026-10-26 | 2026-11-26 |  |  |  |  |  |  |  |  |  |  |  |
| SDR-2-CON-RW-ZA-1500 |  | Milling of wearing course | 4d | 2026-10-26 A | 2026-11-26 | SDR-2-CON-RW-ZA-3420, SDR-2-CON-RW-ZA-1490 | 25% | 4d | 2026-11-23 | 2026-11-26 | 19d | 0d | SIC- Cost [28300.2]; Un-Skilled Labor [57.32 h]; Supervisor [57.32 h]; Skilled Labor [57.32 h]; Water Tanker [20 h]; Water Tanker Operator [57.32 h]; Road Milling Machine [10 h]; Road Milling Machine Operator [60 h]; Sweeper Machine [290 h]; Sweeper Machine Operator [57.32 h] | 29,076.6 | Z A |  |
|  | 3 | **Asphalt Works** |  | 2026-10-28 | 2027-01-10 |  |  |  |  |  |  |  |  |  |  |  |
| SDR-2-CON-RW-ZA-1510 |  | Asphalt works 1st Layer with MC-01 | 18d | 2026-10-28 A | 2026-12-17 | SDR-2-CON-RW-ZA-1490, SDR-2-CON-RW-ZA-1500 | 25% | 18d | 2026-11-28 | 2026-12-17 | 19d | 0d | SIC- Cost; Compactor [90 h]; Dumper Operator [85.98 h]; Dumper Truck [90 h]; Supervisor [85.98 h]; Sweeper Machine [307.11 h]; Sweeper Machine Operator [85.98 h]; Pneumatic Tire Roller [347.33 h]; Pneumatic Roller Operator [85.98 h]; Asphalt Paver [339.11 h]; Asphalt Paver Operator [85.98 h] | 503,392.37 | Z A | ASP |
| SDR-2-CON-RW-ZA-1520 |  | Asphalt works 2nd layer with RC-02 | 20d | 2026-12-19 | 2027-01-10 | SDR-2-CON-RW-ZA-1510 |  |  |  |  | 19d | 0d | SIC- Cost [299797]; Compactor [85 h]; Dumper Operator [85.98 h]; Dumper Truck [90 h]; Supervisor [85.98 h]; Sweeper Machine [40 h]; Sweeper Machine Operator [85.98 h]; Pneumatic Tire Roller [47 h]; Pneumatic Roller Operator [85.98 h]; Asphalt Paver [25.11 h]; Asphalt Paver Operator [85.98 h] | 299,796.96 | Z A |  |
|  | 4 | **Kerbstone Installation** |  | 2026-11-05 | 2027-02-03 |  |  |  |  |  |  |  |  |  |  |  |
| SDR-2-CON-RW-ZA-3440 |  | Kerbstone Installation "all Types" Part 1 | 21d | 2026-11-05 | 2026-11-29 | SDR-2-CON-RW-ZA-1460 |  |  |  |  | 55d | 36d | SIC- Cost; Un-Skilled Labor [40.23 h]; Supervisor [10.06 h]; Skilled Labor [40.23 h] | 32,835.82 | Z A |  |
| SDR-2-CON-RW-ZA-1530 |  | Kerbstone Installation "all Types" Part 2 | 21d | 2027-01-11 | 2027-02-03 | SDR-2-CON-RW-ZA-1520, SDR-2-CON-RW-ZA-3440 |  |  |  |  | 19d | 0d | SIC- Cost; Un-Skilled Labor [40.23 h]; Supervisor [10.06 h]; Skilled Labor [40.23 h] | 254,068.7 | Z A |  |

| ID | WBS | Activity | Duration | Start | Finish | Predecessors | Complete | Remaining | Planned start | Planned finish | Total float | Free float | Resources | Cost | ZONE A | ROAD WORK |
| --- | --- | --- | --- | --- | --- | --- | --- | --- | --- | --- | --- | --- | --- | --- | --- | --- |
|  | 5 | **Interlock Installation** |  | 2027-02-04 | 2027-03-01 |  |  |  |  |  |  |  |  |  |  |  |
| SDR-2-CON-RW-ZA-1540 |  | Interlock Installation | 21d | 2027-02-04 | 2027-03-01 | SDR-2-CON-RW-ZA-1530 |  |  |  |  | 19d | 0d | SIC- Cost [149309]; Un-Skilled Labor [40.23 h]; Supervisor [10.06 h]; Skilled Labor [40.23 h] | 149,308.57 | Z A |  |
|  | 6 | **Road Marking** |  | 2027-03-02 | 2027-04-08 |  |  |  |  |  |  |  |  |  |  |  |
| SDR-2-CON-RW-ZA-1550 |  | Retroreflective Thermoplastic White Traffic lines | 14d | 2027-03-02 | 2027-03-22 | SDR-2-CON-SL-ZA-3490, SDR-2-CON-RW-ZA-1540 |  |  |  |  | 19d | 0d | SIC- Cost [12688.5]; Un-Skilled Labor [19.11 h]; Supervisor [10.06 h]; Skilled Labor [19.11 h] | 12,688.52 | Z A |  |
| SDR-2-CON-RW-ZA-1560 |  | Retroreflective Thermoplastic Yellow, Traffic lines | 15d | 2027-03-23 | 2027-04-08 | SDR-2-CON-RW-ZA-1550 |  |  |  |  | 19d | 0d | SIC- Cost [9772.06]; Un-Skilled Labor [19.11 h]; Supervisor [19.11 h]; Skilled Labor [19.11 h] | 9,772.06 | Z A |  |
|  | 7 | **Traffic Signage** |  | 2027-04-10 | 2027-05-02 |  |  |  |  |  |  |  |  |  |  |  |
| SDR-2-CON-RW-ZA-1570 |  | Single post-Traffic signs Installation | 20d | 2027-04-10 | 2027-05-02 | SDR-2-CON-RW-ZA-1480, SDR-2-CON-RW-ZA-1560 |  |  |  |  | 19d | 18d | SIC- Cost [5283.72]; Un-Skilled Labor [19.11 h]; Supervisor [19.11 h]; Skilled Labor [19.11 h] | 5,283.73 | Z A |  |
|  | 3 | **ROAD WORKS IN ( PH2-A-MCB0 )** |  | 2026-04-22 | 2027-04-26 |  |  |  |  |  |  |  |  |  |  |  |
|  | 1 | **Earth Works Road** |  | 2026-04-22 | 2026-05-24 |  |  |  |  |  |  |  |  |  |  |  |
| SDR-2-CON-RW-ZA-1580 |  | Roadway Excavation and cuttings | 20d | 2026-04-22 A | 2026-05-24 A | SDR-2-CON-RW-ZA-1440 SS+4d | 100% |  | 2026-04-30 | 2026-05-23 |  |  | SIC- Cost [1563524]; Excavator [20 h]; Excavator Operator [143.3 h]; Dumper Operator [143.3 h]; Dumper Truck [150 h]; Grader [220 h]; Grader Operator [143.3 h]; Loader [186 h]; Loader Operator [143.3 h]; Un-Skilled Labor [100.31 h]; Supervisor [100.31 h]; Skilled Labor [100.31 h] | 23,081.48 | Z A | CUT |
|  | 10 | **Backfilling Works** |  | 2026-04-28 | 2026-06-06 |  |  |  |  |  |  |  |  |  |  |  |
| SDR-2-CON-RW-ZA-3040 |  | Embankments to the Road 1 Layer | 21d | 2026-04-28 A | 2026-05-11 A | SDR-2-CON-RW-ZA-1580 FS+2d | 100% |  | 2026-05-26 | 2026-06-23 |  |  | SIC- Cost; Excavator [12.5 h]; Excavator Operator [142.55 h]; Dumper Operator [203.01 h]; Dumper Truck [199 h]; Grader [75 h]; Grader Operator [203.01 h]; Loader [42.02 h]; Loader Operator [152.63 h]; Un-Skilled Labor [52.57 h]; Supervisor [28.69 h]; Skilled Labor [32.11 h]; Water Tanker [183.67 h] | 109,446.69 | Z A | BF |
| SDR-2-CON-RW-ZA-3050 |  | Embankments to the Road 2 Layer | 21d | 2026-05-09 A | 2026-05-18 A | SDR-2-CON-RW-ZA-3040 | 100% |  | 2026-06-24 | 2026-07-18 |  |  | SIC- Cost; Excavator [12.5 h]; Excavator Operator [142.55 h]; Dumper Operator [203.01 h]; Dumper Truck [199 h]; Grader [75 h]; Grader Operator [203.01 h]; Loader [52.14 h]; Loader Operator [152.63 h]; Un-Skilled Labor [203.02 h]; Supervisor [132.47 h]; Skilled Labor [142.55 h]; Water Tanker [138.75 h] | 125,081.93 | Z A | BF |
| SDR-2-CON-RW-ZA-3060 |  | Embankments to the Road 3 Layer | 21d | 2026-05-16 A | 2026-05-24 A | SDR-2-CON-RW-ZA-3050 | 100% |  | 2026-07-19 | 2026-08-11 |  |  | SIC- Cost; Excavator [12.5 h]; Excavator Operator [203.01 h]; Dumper Operator [203.01 h]; Dumper Truck [199 h]; Grader [75 h]; Grader Operator [203.01 h]; Loader [80 h]; Loader Operator [77.06 h]; Un-Skilled Labor [115.59 h]; Supervisor [38.53 h]; Skilled Labor [115.59 h]; Water Tanker [138.75 h] | 453,422 | Z A | BF |
| SDR-2-CON-RW-ZA-1590 |  | Embankments to the Road 4 Layer | 21d | 2026-05-24 A | 2026-06-06 A | SDR-2-CON-RW-ZA-3060 FS+1d | 100% |  | 2026-08-13 | 2026-09-06 |  |  | SIC- Cost; Excavator [12.5 h]; Excavator Operator [137.14 h]; Dumper Operator [203.01 h]; Dumper Truck [199 h]; Grader [75 h]; Grader Operator [203.01 h]; Loader [60 h]; Loader Operator [203.01 h]; Un-Skilled Labor [203.02 h]; Supervisor [203.02 h]; Skilled Labor [203.01 h]; Water Tanker [138.75 h] | 875,573.51 | Z A | BF |
|  | 11 | **Subgrade** |  | 2026-09-01 | 2026-11-01 |  |  |  |  |  |  |  |  |  |  |  |
| SDR-2-CON-RW-ZA-1600 |  | Subgrade layer works | 16d | 2026-09-01 A | 2026-11-01 | SDR-2-CON-RW-ZA-1590 | 50% | 1d | 2026-09-07 | 2026-09-26 | 5d | 0d | SIC- Cost; Compactor [411.25 h]; Excavator [6 h]; Excavator Operator [5.78 h]; Dumper Operator [81.48 h]; Dumper Truck [60 h]; Grader [10 h]; Grader Operator [9.63 h]; Loader [20 h]; Loader Operator [81.48 h]; Un-Skilled Labor [38.53 h]; Supervisor [9.63 h]; Skilled Labor [38.53 h]; Water Tanker [60 h]; Water Tanker Operator [57.79 h] | 1,025,845.67 | Z A | SUB |
|  | 9 | **Earth Works Plot** |  | 2026-06-08 | 2026-11-01 |  |  |  |  |  |  |  |  |  |  |  |
| SDR-2-CON-RW-ZA-1610 |  | Plot Excavation for cuttings (all types of soil) | 21d | 2026-06-08 A | 2026-11-01 | SDR-2-CON-RW-ZA-1580, SDR-2-CON-RW-ZA-1600 FF | 85% | 1d | 2026-09-27 | 2026-10-20 | 28d | 0d | SIC- Cost [82090]; Excavator [10 h]; Excavator Operator [95.54 h]; Dumper Operator [95.54 h]; Dumper Truck [60 h]; Grader [60 h]; Grader Operator [95.54 h]; Loader [284 h]; Loader Operator [95.54 h]; Un-Skilled Labor [95.54 h]; Supervisor [95.54 h]; Skilled Labor [95.54 h] | 82,090.04 | Z A |  |
| SDR-2-CON-RW-ZA-3070 |  | Embankments to the Plot 1 Layer | 21d | 2026-06-15 A | 2026-06-25 A | SDR-2-CON-RW-ZA-1610 SS | 100% |  | 2026-10-22 | 2026-11-15 |  |  | SIC- Cost; Excavator [10 h]; Excavator Operator [81.48 h]; Dumper Operator [81.48 h]; Dumper Truck [60 h]; Grader [60 h]; Grader Operator [81.48 h]; Loader [84.9 h]; Loader Operator [81.48 h]; Un-Skilled Labor [81.48 h]; Supervisor [81.48 h]; Skilled Labor [81.48 h] | 39,546.33 | Z A |  |
| SDR-2-CON-RW-ZA-1620 |  | Embankments to the Plot 2 Layer | 21d | 2026-06-30 A | 2026-11-01 | SDR-2-CON-RW-ZA-3070 FS+1d | 25% | 1d | 2026-11-17 | 2026-12-10 | 131d | 84d | SIC- Cost; Excavator [10 h]; Excavator Operator [81.48 h]; Dumper Operator [81.48 h]; Dumper Truck [177.71 h]; Grader [60 h]; Grader Operator [81.48 h]; Loader [331.38 h]; Loader Operator [81.48 h]; Un-Skilled Labor [81.48 h]; Supervisor [81.48 h]; Skilled Labor [81.48 h] | 39,546.33 | Z A |  |
|  | 8 | **Demolition Work** |  | 2026-10-20 | 2026-11-28 |  |  |  |  |  |  |  |  |  |  |  |
| SDR-2-CON-RW-ZA-1640 |  | Milling of wearing course | 3d | 2026-10-20 A | 2026-11-28 | SDR-2-CON-RW-ZA-1470 SS, SDR-2-CON-RW-ZA-1630 | 25% | 3d | 2026-11-25 | 2026-11-28 | 5d | 0d | SIC- Cost [28300.2]; Un-Skilled Labor [57.32 h]; Supervisor [57.32 h]; Skilled Labor [57.32 h]; Water Tanker [20 h]; Water Tanker Operator [57.32 h]; Road Milling Machine [60 h]; Road Milling Machine Operator [60 h]; Sweeper Machine [40 h]; Sweeper Machine Operator [57.32 h] | 29,076.6 | Z A |  |
|  | 2 | **Base Course** |  | 2026-10-27 | 2026-11-24 |  |  |  |  |  |  |  |  |  |  |  |
| SDR-2-CON-RW-ZA-1630 |  | Aggregate base course layer | 20d | 2026-10-27 A | 2026-11-24 | SDR-2-CON-RW-ZA-1600 | 25% | 20d | 2026-11-02 | 2026-11-24 | 5d | 0d | SIC- Cost [120756]; Dumper Operator [114.64 h]; Dumper Truck [60 h]; Grader [60 h]; Grader Operator [114.64 h]; Loader [41.5 h]; Loader Operator [114.64 h]; Un-Skilled Labor [81.48 h]; Supervisor [81.48 h]; Skilled Labor [81.48 h]; Water Tanker [126 h]; Water Tanker Operator [114.64 h] | 120,755.7 | Z A | BAS |

| ID | WBS | Activity | Duration | Start | Finish | Predecessors | Complete | Remaining | Planned start | Planned finish | Total float | Free float | Resources | Cost | ROAD WORK | ZONE A |
| --- | --- | --- | --- | --- | --- | --- | --- | --- | --- | --- | --- | --- | --- | --- | --- | --- |
|  | 3 | **Asphalt Works** |  | 2026-11-29 | 2027-01-05 |  |  |  |  |  |  |  |  |  |  |  |
| SDR-2-CON-RW-ZA-1650 |  | Asphalt works 1st Layer with MC-01 | 21d | 2026-11-29 | 2026-12-22 | SDR-2-CON-RW-ZA-1630, SDR-2-CON-RW-ZA-1640, SDR-2-CON-RW-ZA-1610 |  |  |  |  | 5d | 0d | SIC- Cost [503392]; Dumper Operator [85.98 h]; Dumper Truck [90 h]; Supervisor [85.98 h]; Sweeper Machine [90 h]; Sweeper Machine Operator [85.98 h]; Pneumatic Tire Roller [40 h]; Pneumatic Roller Operator [85.98 h]; Asphalt Paver [40 h]; Asphalt Paver Operator [85.98 h] | 503,392.37 | ASP | Z A |
| SDR-2-CON-RW-ZA-1660 |  | Asphalt works 2nd layer with RC-02 | 12d | 2026-12-23 | 2027-01-05 | SDR-2-CON-RW-ZA-3030, SDR-2-CON-RW-ZA-1650 |  |  |  |  | 5d | 0d | SIC- Cost; Dumper Operator [45.26 h]; Dumper Truck [90 h]; Supervisor [20.11 h]; Sweeper Machine [90 h]; Sweeper Machine Operator [50.28 h]; Pneumatic Tire Roller [40 h]; Pneumatic Roller Operator [85.98 h]; Asphalt Paver [40 h]; Asphalt Paver Operator [45.26 h] | 299,796.96 |  | Z A |
|  | 4 | **Kerbstone Installation** |  | 2026-11-02 | 2027-01-28 |  |  |  |  |  |  |  |  |  |  |  |
| SDR-2-CON-RW-ZA-3430 |  | Kerbstone Installation "all Types" Part 1 | 20d | 2026-11-02 | 2026-11-24 | SDR-2-CON-RW-ZA-1600 |  |  |  |  | 41d | 0d | SIC- Cost [286905]; Un-Skilled Labor [40.23 h]; Supervisor [10.06 h]; Skilled Labor [40.23 h] | 32,835.82 |  | Z A |
| SDR-2-CON-RW-ZA-1670 |  | Kerbstone Installation "all Types" Part 2 | 20d | 2027-01-06 | 2027-01-28 | SDR-2-CON-RW-ZA-1480, SDR-2-CON-RW-ZA-3430, SDR-2-CON-RW-ZA-1660 |  |  |  |  | 5d | 0d | SIC- Cost [286905]; Un-Skilled Labor [40.23 h]; Supervisor [10.06 h]; Skilled Labor [40.23 h] | 254,068.7 |  | Z A |
|  | 5 | **Interlock Installation** |  | 2027-01-30 | 2027-02-23 |  |  |  |  |  |  |  |  |  |  |  |
| SDR-2-CON-RW-ZA-1680 |  | Interlock Installation | 21d | 2027-01-30 | 2027-02-23 | SDR-2-CON-RW-ZA-1670 |  |  |  |  | 5d | 0d | SIC- Cost; Un-Skilled Labor [40.23 h]; Supervisor [10.06 h]; Skilled Labor [40.23 h] | 149,308.57 |  | Z A |
|  | 6 | **Road Marking** |  | 2027-02-24 | 2027-04-03 |  |  |  |  |  |  |  |  |  |  |  |
| SDR-2-CON-RW-ZA-1690 |  | Retroreflective Thermoplastic White Traffic lines | 15d | 2027-02-24 | 2027-03-17 | SDR-2-CON-RW-ZA-1680 |  |  |  |  | 5d | 0d | SIC- Cost [12688.5]; Un-Skilled Labor [19.11 h]; Supervisor [10.06 h]; Skilled Labor [19.11 h] | 12,688.52 |  | Z A |
| SDR-2-CON-RW-ZA-1700 |  | Retroreflective Thermoplastic Yellow, Traffic lines | 14d | 2027-03-18 | 2027-04-03 | SDR-2-CON-RW-ZA-1690 |  |  |  |  | 5d | 0d | SIC- Cost [9772.06]; Un-Skilled Labor [19.11 h]; Supervisor [19.11 h]; Skilled Labor [19.11 h] | 9,772.06 |  | Z A |
|  | 7 | **Traffic Signage** |  | 2027-04-04 | 2027-04-26 |  |  |  |  |  |  |  |  |  |  |  |
| SDR-2-CON-RW-ZA-1710 |  | Single post-Traffic signs Installation | 20d | 2027-04-04 | 2027-04-26 | SDR-2-CON-RW-ZA-1700, SDR-2-CON-RW-ZA-1620 |  |  |  |  | 5d | 0d | SIC- Cost [5283.72]; Un-Skilled Labor [19.11 h]; Supervisor [19.11 h]; Skilled Labor [19.11 h] | 5,283.73 |  | Z A |
|  | 7 | **ROAD WORKS IN ( PH2-A-MCC0 )** |  | 2026-04-09 | 2027-05-04 |  |  |  |  |  |  |  |  |  |  |  |
|  | 1 | **Earth Works Road** |  | 2026-05-09 | 2026-06-01 |  |  |  |  |  |  |  |  |  |  |  |
| SDR-2-CON-RW-ZA-1720 |  | Roadway Excavation and cuttings | 20d | 2026-05-09 A | 2026-06-01 A | SDR-2-CON-RW-ZA-1580 SS+4d | 100% |  | 2026-05-05 | 2026-06-01 |  |  | SIC- Cost [1563524]; Excavator [20 h]; Excavator Operator [143.3 h]; Dumper Operator [143.3 h]; Dumper Truck [150 h]; Grader [50 h]; Grader Operator [143.3 h]; Loader [476.36 h]; Loader Operator [143.3 h]; Un-Skilled Labor [71.65 h]; Supervisor [71.65 h]; Skilled Labor [71.65 h] | 23,081.48 | CUT |  |
|  | 10 | **Backfilling Works** |  | 2026-04-09 | 2026-07-05 |  |  |  |  |  |  |  |  |  |  |  |
| SDR-2-CON-RW-ZA-3080 |  | Embankments to the Road 1 Layer | 21d | 2026-04-09 A | 2026-04-22 A | SDR-2-CON-RW-ZA-1720 | 100% |  | 2026-06-02 | 2026-06-25 |  |  | SIC- Cost; Excavator [17.5 h]; Excavator Operator [122.4 h]; Dumper Operator [203.01 h]; Dumper Truck [187.92 h]; Grader [75 h]; Grader Operator [203.01 h]; Loader [43.01 h]; Loader Operator [132.48 h]; Un-Skilled Labor [71.91 h]; Supervisor [109.3 h]; Skilled Labor [37.51 h]; Water Tanker [192.75 h] | 109,446.69 | BF |  |
| SDR-2-CON-RW-ZA-3090 |  | Embankments to the Road 2 Layer | 21d | 2026-04-22 A | 2026-04-30 A | SDR-2-CON-RW-ZA-3080 | 100% |  | 2026-06-27 | 2026-07-20 |  |  | SIC- Cost; Excavator [17.5 h]; Excavator Operator [203.01 h]; Dumper Operator [203.01 h]; Dumper Truck [187.92 h]; Grader [75 h]; Grader Operator [203.01 h]; Loader [40 h]; Loader Operator [172.78 h]; Un-Skilled Labor [203.02 h]; Supervisor [152.64 h]; Skilled Labor [162.7 h]; Water Tanker [138.75 h] | 125,081.93 | BF |  |
| SDR-2-CON-RW-ZA-3100 |  | Embankments to the Road 3 Layer | 21d | 2026-06-22 A | 2026-06-29 A | SDR-2-CON-RW-ZA-3090, SDR-2-PRO-DEL-M-1050 SS, SDR-2-PRO-DEL-M-1030 SS | 100% |  | 2026-07-21 | 2026-08-13 |  |  | SIC- Cost; Excavator [17.5 h]; Excavator Operator [17.34 h]; Dumper Operator [203.01 h]; Dumper Truck [187.92 h]; Grader [75 h]; Grader Operator [203.01 h]; Loader [82.5 h]; Loader Operator [79.95 h]; Un-Skilled Labor [115.59 h]; Supervisor [38.53 h]; Skilled Labor [115.59 h]; Water Tanker [138.75 h] | 453,422 | BF |  |
| SDR-2-CON-RW-ZA-1730 |  | Embankments to the Road 4 Layer | 21d | 2026-06-29 A | 2026-07-05 A | SDR-2-CON-RW-ZA-3100 FS+4d | 100% |  | 2026-08-19 | 2026-09-12 |  |  | SIC- Cost; Excavator [17.5 h]; Excavator Operator [203.01 h]; Dumper Operator [203.01 h]; Dumper Truck [102.62 h]; Grader [75 h]; Grader Operator [203.01 h]; Loader [72.78 h]; Loader Operator [203.01 h]; Un-Skilled Labor [203.01 h]; Supervisor [203.01 h]; Skilled Labor [203.01 h]; Water Tanker [198.75 h] | 875,573.51 | BF |  |
|  | 11 | **Subgrade** |  | 2026-07-01 | 2026-09-17 |  |  |  |  |  |  |  |  |  |  |  |
| SDR-2-CON-RW-ZA-1740 |  | Subgrade layer works | 16d | 2026-07-01 A | 2026-09-17 A | SDR-2-CON-RW-ZA-1730 | 100% |  | 2026-09-13 | 2026-10-01 |  |  | SIC- Cost [1025846]; Excavator [27.38 h]; Excavator Operator [95.54 h]; Dumper Operator [95.54 h]; Dumper Truck [60 h]; Grader [60 h]; Grader Operator [95.54 h]; Loader [38 h]; Loader Operator [95.54 h]; Un-Skilled Labor [95.54 h]; Supervisor [95.54 h]; Skilled Labor [95.54 h]; Water Tanker [60 h]; Water Tanker Operator [95.54 h] | 1,025,845.67 | SUB |  |
|  | 9 | **Earth Works Plot** |  | 2026-06-08 | 2026-11-05 |  |  |  |  |  |  |  |  |  |  |  |
| SDR-2-CON-RW-ZA-1750 |  | Plot Excavation for cuttings (all types of soil) | 20d | 2026-06-08 A | 2026-11-01 | SDR-2-CON-RW-ZA-1720, SDR-2-CON-RW-ZA-1740, SDR-2-PRO-DEL-E-1160 FF | 85% | 1d | 2026-10-03 | 2026-10-25 | 65d | 0d | SIC- Cost [82090]; Excavator; Excavator Operator [95.54 h]; Dumper Operator [95.54 h]; Dumper Truck [60 h]; Grader [60 h]; Grader Operator [95.54 h]; Loader [274.6 h]; Loader Operator [95.54 h]; Un-Skilled Labor [95.54 h]; Supervisor [95.54 h]; Skilled Labor [95.54 h] | 82,090.04 |  |  |
| SDR-2-CON-RW-ZA-3110 |  | Embankments to the Plot 1 Layer | 21d | 2026-07-07 A | 2026-11-05 A | SDR-2-CON-RW-ZA-1750 | 100% |  | 2026-10-26 | 2026-11-18 |  |  | SIC- Cost; Excavator [8.76 h]; Excavator Operator [81.48 h]; Dumper Operator [81.48 h]; Dumper Truck [60 h]; Grader [60 h]; Grader Operator [81.48 h]; Loader [60 h]; Loader Operator [81.48 h]; Un-Skilled Labor [38.53 h]; Supervisor [9.63 h]; Skilled Labor [38.53 h] | 39,546.33 |  |  |
| SDR-2-CON-RW-ZA-1760 |  | Embankments to the Plot 2 Layer | 21d | 2026-07-18 A | 2026-11-02 | SDR-2-CON-RW-ZA-3110, SDR-2-CON-RW-ZA-3070 FS+4d | 80% | 1d | 2026-11-21 | 2026-12-14 | 110d | 0d | SIC- Cost; Excavator [8.76 h]; Excavator Operator [81.48 h]; Dumper Operator [81.48 h]; Dumper Truck [120.33 h]; Grader [60 h]; Grader Operator [57.79 h]; Loader [42.67 h]; Loader Operator [40.46 h]; Un-Skilled Labor [38.53 h]; Supervisor [9.63 h]; Skilled Labor [38.53 h] | 39,546.33 |  |  |

| ID | WBS | Activity | Duration | Start | Finish | Predecessors | Complete | Remaining | Planned start | Planned finish | Total float | Free float | Resources | Cost | ROAD WORK |
| --- | --- | --- | --- | --- | --- | --- | --- | --- | --- | --- | --- | --- | --- | --- | --- |
|  | 2 | **Base Course** |  | 2026-08-31 | 2026-10-14 |  |  |  |  |  |  |  |  |  |  |
| SDR-2-CON-RW-ZA-1770 |  | Aggregate base course layer | 21d | 2026-08-31 A | 2026-10-14 A | SDR-2-CON-RW-ZA-1740 | 100% |  | 2026-10-03 | 2026-10-26 |  |  | SIC- Cost; Dumper Operator [95.54 h]; Dumper Truck [60 h]; Grader [60 h]; Grader Operator [95.54 h]; Loader [20 h]; Loader Operator [95.54 h]; Un-Skilled Labor [38.53 h]; Supervisor [9.63 h]; Skilled Labor [48.16 h]; Water Tanker [40 h]; Water Tanker Operator [38.53 h] | 120,755.7 | BAS |
|  | 8 | **Demolition Work** |  | 2026-10-15 | 2026-10-19 |  |  |  |  |  |  |  |  |  |  |
| SDR-2-CON-RW-ZA-1780 |  | Milling of wearing course | 3d | 2026-10-15 A | 2026-10-19 A | SDR-2-CON-RW-ZA-3430 SS, SDR-2-CON-RW-ZA-1770 | 100% |  | 2026-10-20 | 2026-10-22 |  |  | SIC- Cost [28300.2]; Un-Skilled Labor [57.32 h]; Supervisor [57.32 h]; Skilled Labor [57.32 h]; Water Tanker [40 h]; Water Tanker Operator [57.32 h]; Road Milling Machine [312 h]; Road Milling Machine Operator [60 h]; Sweeper Machine [40 h]; Sweeper Machine Operator [57.32 h] | 29,076.6 |  |
|  | 3 | **Asphalt Works** |  | 2026-10-28 | 2027-01-14 |  |  |  |  |  |  |  |  |  |  |
| SDR-2-CON-RW-ZA-1790 |  | Asphalt works 1st Layer with MC-01 | 16d | 2026-10-28 A | 2027-01-02 | SDR-2-CON-RW-ZA-3470, SDR-2-CON-RW-ZA-1770, SDR-2-CON-RW-ZA-1780 | 75% | 16d | 2026-12-15 | 2027-01-02 | 17d | 0d | SIC- Cost; Dumper Operator [85.98 h]; Dumper Truck [90 h]; Supervisor [20.11 h]; Sweeper Machine [90 h]; Sweeper Machine Operator [50.28 h]; Pneumatic Tire Roller [40 h]; Pneumatic Roller Operator [50.28 h]; Asphalt Paver [23.3 h]; Asphalt Paver Operator [46.26 h] | 503,392.37 | ASP |
| SDR-2-CON-RW-ZA-1800 |  | Asphalt works 2nd layer with RC-02 | 11d | 2027-01-03 | 2027-01-14 | SDR-2-CON-RW-ZA-1790 |  |  |  |  | 17d | 0d | SIC- Cost; Dumper Operator [50.28 h]; Dumper Truck [90 h]; Supervisor [20.11 h]; Sweeper Machine [40 h]; Sweeper Machine Operator [50.28 h]; Pneumatic Tire Roller [40 h]; Pneumatic Roller Operator [85.98 h]; Asphalt Paver [40 h]; Asphalt Paver Operator [45.26 h] | 299,796.96 |  |
|  | 4 | **Kerbstone Installation** |  | 2026-11-01 | 2027-02-07 |  |  |  |  |  |  |  |  |  |  |
| SDR-2-CON-RW-ZA-3450 |  | Kerbstone Installation "all Types" Part 1 | 18d | 2026-11-01 | 2026-11-21 | SDR-2-CON-RW-ZA-1740 |  |  |  |  | 65d | 50d | SIC- Cost; Un-Skilled Labor [60.34 h]; Supervisor [10.06 h]; Skilled Labor [60.34 h] | 32,835.82 |  |
| SDR-2-CON-RW-ZA-1810 |  | Kerbstone Installation "all Types" Part 2 | 20d | 2027-01-16 | 2027-02-07 | SDR-2-CON-RW-ZA-1800 |  |  |  |  | 17d | 0d | SIC- Cost; Un-Skilled Labor [60.34 h]; Supervisor [10.06 h]; Skilled Labor [60.34 h] | 254,068.7 |  |
|  | 5 | **Interlock Installation** |  | 2027-02-08 | 2027-03-04 |  |  |  |  |  |  |  |  |  |  |
| SDR-2-CON-RW-ZA-1820 |  | Interlock Installation | 21d | 2027-02-08 | 2027-03-04 | SDR-2-CON-RW-ZA-1810 |  |  |  |  | 17d | 0d | SIC- Cost; Un-Skilled Labor [60.34 h]; Supervisor [10.06 h]; Skilled Labor [60.34 h] | 149,308.57 |  |
|  | 6 | **Road Marking** |  | 2027-03-06 | 2027-04-11 |  |  |  |  |  |  |  |  |  |  |
| SDR-2-CON-RW-ZA-1830 |  | Retroreflective Thermoplastic White Traffic lines | 14d | 2027-03-06 | 2027-03-25 | SDR-2-CON-RW-ZA-1760 SS, SDR-2-CON-RW-ZA-1820 |  |  |  |  | 17d | 0d | SIC- Cost [12688.5]; Un-Skilled Labor [19.11 h]; Supervisor [19.11 h]; Skilled Labor [19.11 h] | 12,688.52 |  |
| SDR-2-CON-RW-ZA-1840 |  | Retroreflective Thermoplastic Yellow, Traffic lines | 14d | 2027-03-27 | 2027-04-11 | SDR-2-CON-RW-ZA-1830 |  |  |  |  | 17d | 0d | SIC- Cost [9772.06]; Un-Skilled Labor [19.11 h]; Supervisor [19.11 h]; Skilled Labor [19.11 h] | 9,772.06 |  |
|  | 7 | **Traffic Signage** |  | 2027-04-12 | 2027-05-04 |  |  |  |  |  |  |  |  |  |  |
| SDR-2-CON-RW-ZA-1850 |  | Single post-Traffic signs Installation | 20d | 2027-04-12 | 2027-05-04 | SDR-2-CON-RW-ZA-1840, SDR-2-CON-RW-ZA-1760 |  |  |  |  | 17d | 16d | SIC- Cost [5283.72]; Un-Skilled Labor [19.11 h]; Supervisor [19.11 h]; Skilled Labor [19.11 h] | 5,283.73 |  |
|  | 4 | **ROAD WORKS IN ( PH2-A-MCD0 )** |  | 2026-05-09 | 2027-05-06 |  |  |  |  |  |  |  |  |  |  |
|  | 1 | **Earth Works Road** |  | 2026-05-09 | 2026-05-12 |  |  |  |  |  |  |  |  |  |  |
| SDR-2-CON-RW-ZA-1860 |  | Roadway Excavation and cuttings | 20d | 2026-05-09 A | 2026-05-12 A | SDR-2-CON-RW-ZA-1720 SS+3d | 100% |  | 2026-05-09 | 2026-06-04 |  |  | SIC- Cost; Excavator; Excavator Operator; Dumper Operator; Dumper Truck; Grader; Grader Operator; Loader; Loader Operator; Un-Skilled Labor; Supervisor; Skilled Labor | 23,081.48 | CUT |
|  | 10 | **Backfilling Works** |  | 2026-05-15 | 2026-07-05 |  |  |  |  |  |  |  |  |  |  |
| SDR-2-CON-RW-ZA-3120 |  | Embankments to the Road 1 Layer | 21d | 2026-05-15 A | 2026-05-24 A | SDR-2-CON-RW-ZA-1860 | 100% |  | 2026-06-06 | 2026-06-29 |  |  | SIC- Cost [23081.5]; Excavator [70 h]; Excavator Operator [89.69 h]; Dumper Operator [543.17 h]; Dumper Truck [746 h]; Grader [400 h]; Grader Operator [543.17 h]; Loader [76.85 h]; Loader Operator [543.17 h]; Un-Skilled Labor [154.88 h]; Supervisor [52.9 h]; Skilled Labor [154.88 h] | 109,446.69 | BF |
| SDR-2-CON-RW-ZA-3130 |  | Embankments to the Road 2 Layer | 21d | 2026-05-24 A | 2026-06-04 A | SDR-2-CON-RW-ZA-3120, SDR-2-PRO-DES-E-1000, SDR-2-PRO-DES-C-1000 | 100% |  | 2026-06-30 | 2026-07-23 |  |  | SIC- Cost [23081.5]; Excavator [70 h]; Excavator Operator [67.43 h]; Dumper Operator [543.17 h]; Dumper Truck [471 h]; Grader [60 h]; Grader Operator [57.79 h]; Loader [40 h]; Loader Operator [38.53 h]; Un-Skilled Labor [105.44 h]; Supervisor [38.66 h]; Skilled Labor [44.76 h] | 125,081.93 | BF |
| SDR-2-CON-RW-ZA-3140 |  | Embankments to the Road 3 Layer | 21d | 2026-06-08 A | 2026-06-18 A | SDR-2-CON-RW-ZA-3130 | 100% |  | 2026-07-25 | 2026-08-17 |  |  | SIC- Cost [23081.5]; Excavator [70 h]; Excavator Operator [67.43 h]; Dumper Operator [543.17 h]; Dumper Truck [746 h]; Grader [400 h]; Grader Operator [385.29 h]; Loader [111.41 h]; Loader Operator [107.88 h]; Un-Skilled Labor [192.65 h]; Supervisor [57.79 h]; Skilled Labor [192.65 h] | 453,422 | BF |
| SDR-2-CON-RW-ZA-1870 |  | Embankments to the Road 4 Layer | 21d | 2026-06-24 A | 2026-07-05 A | SDR-2-CON-RW-ZA-3140 FS+1d, SDR-2-PRO-DEL-E-1040 | 100% |  | 2026-08-19 | 2026-09-12 |  |  | SIC- Cost [23081.5]; Excavator [70 h]; Excavator Operator [254.21 h]; Dumper Operator [543.17 h]; Dumper Truck [446 h]; Grader [120 h]; Grader Operator [543.17 h]; Loader [60 h]; Loader Operator [543.17 h]; Un-Skilled Labor [543.17 h]; Supervisor [543.17 h]; Skilled Labor [543.17 h] | 875,573.51 | BF |

| ID | WBS | Activity | Duration | Start | Finish | Predecessors | Complete | Remaining | Planned start | Planned finish | Total float | Free float | Resources | Cost | ROAD WORK | ZONE A |
| --- | --- | --- | --- | --- | --- | --- | --- | --- | --- | --- | --- | --- | --- | --- | --- | --- |
|  | 11 | **Subgrade** |  | 2026-08-11 | 2026-09-17 |  |  |  |  |  |  |  |  |  |  |  |
| SDR-2-CON-RW-ZA-1880 |  | Subgrade layer works | 20d | 2026-08-11 A | 2026-09-17 A | SDR-2-PRO-DES-C-1070, SDR-2-CON-RW-ZA-1870 | 100% |  | 2026-09-13 | 2026-10-06 |  |  | SIC- Cost; Excavator [6 h]; Excavator Operator [95.54 h]; Dumper Operator [95.54 h]; Dumper Truck [60 h]; Grader [60 h]; Grader Operator [95.54 h]; Loader [20 h]; Loader Operator [19.26 h]; Un-Skilled Labor [38.53 h]; Supervisor [9.63 h]; Skilled Labor [38.53 h]; Water Tanker [40 h]; Water Tanker Operator [38.53 h] | 428,830.75 | SUB |  |
|  | 9 | **Earth Works Plot** |  | 2026-06-09 | 2026-10-17 |  |  |  |  |  |  |  |  |  |  |  |
| SDR-2-CON-RW-ZA-3150 |  | Embankments to the Plot 1 Layer | 21d | 2026-06-09 A | 2026-06-14 A | SDR-2-CON-RW-ZA-1890 SS | 100% |  | 2026-11-01 | 2026-11-24 |  |  | SIC- Cost; Excavator [18.85 h]; Excavator Operator [40.74 h]; Dumper Operator [40.74 h]; Dumper Truck [30 h]; Grader [30 h]; Grader Operator [40.74 h]; Loader [40 h]; Loader Operator [40.74 h]; Un-Skilled Labor [40.74 h]; Supervisor [40.74 h]; Skilled Labor [40.74 h] | 39,546.33 |  |  |
| SDR-2-CON-RW-ZA-1890 |  | Plot Excavation for cuttings (all types of soil) | 21d | 2026-06-15 A | 2026-10-15 A | SDR-2-CON-RW-ZA-1860, SDR-2-CON-RW-ZA-1880 | 100% |  | 2026-10-07 | 2026-10-31 |  |  | SIC- Cost [82090]; Excavator [60 h]; Excavator Operator [95.54 h]; Dumper Operator [95.54 h]; Dumper Truck [60 h]; Grader [60 h]; Grader Operator [95.54 h]; Loader [25.51 h]; Loader Operator [95.54 h]; Un-Skilled Labor [95.54 h]; Supervisor [95.54 h]; Skilled Labor [95.54 h] | 679,104.97 |  |  |
| SDR-2-CON-RW-ZA-1900 |  | Embankments to the Plot 2 Layer | 21d | 2026-06-23 A | 2026-10-17 A | SDR-2-CON-RW-ZA-3150 FS+1d | 100% |  | 2026-11-26 | 2026-12-20 |  |  | SIC- Cost; Excavator [18.85 h]; Excavator Operator [40.74 h]; Dumper Operator [40.74 h]; Dumper Truck [309.32 h]; Grader [30 h]; Grader Operator [40.74 h]; Loader [41.14 h]; Loader Operator [40.74 h]; Un-Skilled Labor [40.74 h]; Supervisor [40.74 h]; Skilled Labor [40.74 h] | 39,546.33 |  |  |
|  | 2 | **Base Course** |  | 2026-08-30 | 2026-10-14 |  |  |  |  |  |  |  |  |  |  |  |
| SDR-2-CON-RW-ZA-1910 |  | Aggregate base course layer | 20d | 2026-08-30 A | 2026-10-14 A | SDR-2-CON-RW-ZA-1880 | 100% |  | 2026-10-07 | 2026-10-29 |  |  | SIC- Cost; Dumper Operator [95.54 h]; Dumper Truck [60 h]; Grader [60 h]; Grader Operator [95.54 h]; Loader [25 h]; Loader Operator [95.54 h]; Un-Skilled Labor [95.54 h]; Supervisor [95.54 h]; Skilled Labor [95.54 h]; Water Tanker [26.55 h]; Water Tanker Operator [95.54 h] | 120,755.7 | BAS |  |
|  | 8 | **Demolition Work** |  | 2026-10-14 | 2026-10-19 |  |  |  |  |  |  |  |  |  |  |  |
| SDR-2-CON-RW-ZA-1920 |  | Milling of wearing course | 6d | 2026-10-14 A | 2026-10-19 A | SDR-2-CON-RW-ZA-1910, SDR-2-CON-RW-ZA-1750 SS | 100% |  | 2026-10-19 | 2026-10-25 |  |  | SIC- Cost; Un-Skilled Labor [57.32 h]; Supervisor [57.32 h]; Skilled Labor [57.32 h]; Water Tanker [90 h]; Water Tanker Operator [57.32 h]; Road Milling Machine [60 h]; Road Milling Machine Operator [60 h]; Sweeper Machine [60 h]; Sweeper Machine Operator [57.32 h] | 29,076.6 |  |  |
|  | 3 | **Asphalt Works** |  | 2026-10-27 | 2027-01-16 |  |  |  |  |  |  |  |  |  |  |  |
| SDR-2-CON-RW-ZA-1930 |  | Asphalt works 1st Layer with MC-01 | 9d | 2026-10-27 A | 2027-01-07 | SDR-2-CON-RW-ZA-3450 SS, SDR-2-CON-RW-ZA-3480, SDR-2-CON-ST-ZA-6340, SDR-2-CON-RW-ZA-1910, SDR-2-CON-RW-ZA-1920 | 75% | 9d | 2026-12-29 | 2027-01-07 | 15d | 0d | SIC- Cost [503392]; Dumper Operator [85.98 h]; Dumper Truck [90 h]; Supervisor [10.06 h]; Sweeper Machine [90 h]; Sweeper Machine Operator [60.34 h]; Pneumatic Tire Roller [304.01 h]; Pneumatic Roller Operator [60.34 h]; Asphalt Paver [123.3 h]; Asphalt Paver Operator [60.34 h] | 503,392.37 | ASP |  |
| SDR-2-CON-RW-ZA-1940 |  | Asphalt works 2nd layer with RC-02 | 7d | 2027-01-09 | 2027-01-16 | SDR-2-CON-RW-ZA-1930 |  |  |  |  | 15d | 0d | SIC- Cost [299797]; Dumper Operator [60.34 h]; Dumper Truck [90 h]; Supervisor [10.06 h]; Sweeper Machine [40 h]; Sweeper Machine Operator [45.26 h]; Pneumatic Tire Roller [40 h]; Pneumatic Roller Operator [60.34 h]; Asphalt Paver [40 h]; Asphalt Paver Operator [45.26 h] | 299,796.96 |  |  |
|  | 4 | **Kerbstone Installation** |  | 2026-10-31 | 2027-02-09 |  |  |  |  |  |  |  |  |  |  |  |
| SDR-2-CON-RW-ZA-3460 |  | Kerbstone Installation "all Types" Part 1 | 18d | 2026-10-31 A | 2026-11-21 | SDR-2-CON-RW-ZA-1880 | 25% | 18d | 2026-11-01 | 2026-11-21 | 63d | 48d | SIC- Cost [286905]; Un-Skilled Labor [60.34 h]; Supervisor [10.06 h]; Skilled Labor [60.34 h] | 32,835.82 |  |  |
| SDR-2-CON-RW-ZA-1950 |  | Kerbstone Installation "all Types" Part 2 | 21d | 2027-01-17 | 2027-02-09 | SDR-2-CON-RW-ZA-1940, SDR-2-CON-RW-ZA-3460 |  |  |  |  | 15d | 0d | SIC- Cost [286905]; Un-Skilled Labor [60.34 h]; Supervisor [10.06 h]; Skilled Labor [60.34 h] | 254,068.7 |  |  |
|  | 5 | **Interlock Installation** |  | 2027-02-10 | 2027-03-07 |  |  |  |  |  |  |  |  |  |  |  |
| SDR-2-CON-RW-ZA-1960 |  | Interlock Installation | 21d | 2027-02-10 | 2027-03-07 | SDR-2-CON-RW-ZA-1950 |  |  |  |  | 15d | 0d | SIC- Cost [149309]; Un-Skilled Labor [60.34 h]; Supervisor [10.06 h]; Skilled Labor [60.34 h] | 149,308.57 |  |  |
|  | 6 | **Road Marking** |  | 2027-03-08 | 2027-04-13 |  |  |  |  |  |  |  |  |  |  |  |
| SDR-2-CON-RW-ZA-1970 |  | Retroreflective Thermoplastic White Traffic lines | 14d | 2027-03-08 | 2027-03-28 | SDR-2-CON-RW-ZA-1960, SDR-2-CON-RW-ZA-1900 SS+2d |  |  |  |  | 15d | 0d | SIC- Cost [12688.5]; Un-Skilled Labor [19.11 h]; Supervisor [19.11 h]; Skilled Labor [19.11 h] | 12,688.52 |  |  |
| SDR-2-CON-RW-ZA-1980 |  | Retroreflective Thermoplastic Yellow, Traffic lines | 14d | 2027-03-29 | 2027-04-13 | SDR-2-CON-RW-ZA-1970 |  |  |  |  | 15d | 0d | SIC- Cost [9772.06]; Un-Skilled Labor [19.11 h]; Supervisor [19.11 h]; Skilled Labor [19.11 h] | 9,772.06 |  |  |
|  | 7 | **Traffic Signage** |  | 2027-04-14 | 2027-05-06 |  |  |  |  |  |  |  |  |  |  |  |
| SDR-2-CON-RW-ZA-1990 |  | Single post-Traffic signs Installation | 20d | 2027-04-14 | 2027-05-06 | SDR-2-CON-RW-ZA-1900, SDR-2-CON-RW-ZA-1980 |  |  |  |  | 15d | 14d | SIC- Cost [5283.72]; Un-Skilled Labor [19.11 h]; Supervisor [19.11 h]; Skilled Labor [19.11 h] | 5,283.73 |  |  |
|  | 5 | **ROAD WORKS IN ( PH2-A-MCE0 )** |  | 2026-04-07 | 2027-04-21 |  |  |  |  |  |  |  |  |  |  |  |
|  | 1 | **Earth Works Road** |  | 2026-05-02 | 2026-06-01 |  |  |  |  |  |  |  |  |  |  |  |
| SDR-2-CON-RW-ZA-2000 |  | Roadway Excavation and cuttings | 20d | 2026-05-02 A | 2026-06-01 A | SDR-2-CON-RW-ZA-1860 SS+3d | 100% |  | 2026-05-12 | 2026-06-08 |  |  | SIC- Cost [1563524]; Excavator [30 h]; Excavator Operator [72.76 h]; Dumper Operator [143.3 h]; Dumper Truck [150 h]; Grader [75 h]; Grader Operator [143.3 h]; Loader [112 h]; Loader Operator [143.3 h]; Un-Skilled Labor [28.66 h]; Supervisor [28.66 h]; Skilled Labor [18.18 h] | 23,081.48 | CUT | Z A |

| ID | WBS | Activity | Duration | Start | Finish | Predecessors | Complete | Remaining | Planned start | Planned finish | Total float | Free float | Resources | Cost | ROAD WORK | ZONE A |
| --- | --- | --- | --- | --- | --- | --- | --- | --- | --- | --- | --- | --- | --- | --- | --- | --- |
|  | 10 | **Backfilling Works** |  | 2026-04-07 | 2026-06-16 |  |  |  |  |  |  |  |  |  |  |  |
| SDR-2-CON-RW-ZA-3160 |  | Embankments to the Road 1 Layer | 21d | 2026-04-07 A | 2026-05-24 A | SDR-2-CON-RW-ZA-2000 | 100% |  | 2026-06-09 | 2026-07-02 |  |  | SIC- Cost; Excavator [17.5 h]; Excavator Operator [65.25 h]; Dumper Operator [135.79 h]; Dumper Truck [93.49 h]; Grader [100 h]; Grader Operator [135.79 h]; Loader [60.12 h]; Loader Operator [75.33 h]; Un-Skilled Labor [90.22 h]; Supervisor [65.25 h]; Skilled Labor [48.56 h] | 109,446.69 | BF | Z A |
| SDR-2-CON-RW-ZA-3170 |  | Embankments to the Road 2 Layer | 21d | 2026-05-10 A | 2026-05-19 A | SDR-2-CON-RW-ZA-3160 | 100% |  | 2026-07-04 | 2026-07-27 |  |  | SIC- Cost; Excavator [17.5 h]; Excavator Operator [135.79 h]; Dumper Operator [135.79 h]; Dumper Truck [93.49 h]; Grader [68.57 h]; Grader Operator [135.79 h]; Loader [43.85 h]; Loader Operator [135.79 h]; Un-Skilled Labor [135.79 h]; Supervisor [135.79 h]; Skilled Labor [135.79 h] | 125,081.93 | BF | Z A |
| SDR-2-CON-RW-ZA-3180 |  | Embankments to the Road 3 Layer | 21d | 2026-05-19 A | 2026-06-01 A | SDR-2-CON-RW-ZA-3170 | 100% |  | 2026-07-28 | 2026-08-20 |  |  | SIC- Cost; Excavator [17.5 h]; Excavator Operator [135.79 h]; Dumper Operator [135.79 h]; Dumper Truck [93.49 h]; Grader [100 h]; Grader Operator [135.79 h]; Loader [87.74 h]; Loader Operator [84.76 h]; Un-Skilled Labor [57.79 h]; Supervisor [38.53 h]; Skilled Labor [57.79 h] | 453,422 | BF | Z A |
| SDR-2-CON-RW-ZA-2010 |  | Embankments to the Road 4 Layer | 21d | 2026-06-03 A | 2026-06-16 A | SDR-2-CON-RW-ZA-3180, SDR-2-CON-RW-ZA-3180 FF | 100% |  | 2026-08-22 | 2026-09-14 |  |  | SIC- Cost; Excavator [17.5 h]; Excavator Operator [59.22 h]; Dumper Operator [135.79 h]; Dumper Truck [93.49 h]; Grader [100 h]; Grader Operator [135.79 h]; Loader [35.24 h]; Loader Operator [135.79 h]; Un-Skilled Labor [135.82 h]; Supervisor [135.82 h]; Skilled Labor [135.82 h] | 875,573.51 | BF | Z A |
|  | 11 | **Subgrade** |  | 2026-10-05 | 2026-11-23 |  |  |  |  |  |  |  |  |  |  |  |
| SDR-2-CON-RW-ZA-2020 |  | Subgrade layer works | 20d | 2026-10-05 A | 2026-11-23 | SDR-2-CON-RW-ZA-2010 | 75% | 20d | 2026-10-05 | 2026-10-27 | 17d | 0d | SIC- Cost; Excavator [13 h]; Excavator Operator [12.52 h]; Dumper Operator [85.98 h]; Dumper Truck [90 h]; Grader [60 h]; Grader Operator [85.98 h]; Loader [20 h]; Loader Operator [85.98 h]; Un-Skilled Labor [38.53 h]; Supervisor [9.63 h]; Skilled Labor [38.53 h]; Water Tanker [47 h]; Water Tanker Operator [45.27 h] | 1,025,845.67 | SUB | Z A |
|  | 9 | **Earth Works Plot** |  | 2026-06-14 | 2026-11-23 |  |  |  |  |  |  |  |  |  |  |  |
| SDR-2-CON-RW-ZA-3190 |  | Embankments to the Plot 2 Layer | 21d | 2026-06-14 A | 2026-11-23 | SDR-2-CON-RW-ZA-2030 FF | 75% | 1d | 2026-11-03 | 2026-11-26 | 64d | 0d | SIC- Cost; Excavator [7.88 h]; Excavator Operator [40.74 h]; Dumper Operator [40.74 h]; Dumper Truck [30 h]; Grader [30 h]; Grader Operator [40.74 h]; Loader [40 h]; Loader Operator [40.74 h]; Un-Skilled Labor [40.74 h]; Supervisor [40.74 h]; Skilled Labor [40.74 h] | 39,546.33 |  | Z A |
| SDR-2-CON-RW-ZA-2030 |  | Plot Excavation for cuttings (all types of soil) | 21d | 2026-06-15 A | 2026-11-23 | SDR-2-CON-RW-ZA-2000, SDR-2-CON-RW-ZA-2020 FF | 60% | 1d | 2026-10-10 | 2026-11-02 | 42d | 0d | SIC- Cost [82090]; Excavator [6 h]; Excavator Operator [95.54 h]; Dumper Operator [95.54 h]; Dumper Truck [100 h]; Grader [62 h]; Grader Operator [95.54 h]; Loader [20.8 h]; Loader Operator [95.54 h]; Un-Skilled Labor [95.54 h]; Supervisor [95.54 h]; Skilled Labor [95.54 h] | 82,090.04 |  | Z A |
| SDR-2-CON-RW-ZA-2040 |  | Embankments to the Plot 1 Layer | 21d | 2026-07-13 A | 2026-10-26 A | SDR-2-CON-RW-ZA-3110, SDR-2-CON-RW-ZA-3190 FF | 100% |  | 2026-11-29 | 2026-12-22 |  |  | SIC- Cost; Excavator [7.88 h]; Excavator Operator [40.74 h]; Dumper Operator [40.74 h]; Dumper Truck [390.14 h]; Grader [30 h]; Grader Operator [40.74 h]; Loader [50.04 h]; Loader Operator [40.74 h]; Un-Skilled Labor [40.74 h]; Supervisor [40.74 h]; Skilled Labor [40.74 h] | 39,546.33 |  | Z A |
|  | 2 | **Base Course** |  | 2026-10-28 | 2026-12-02 |  |  |  |  |  |  |  |  |  |  |  |
| SDR-2-CON-RW-ZA-2050 |  | Aggregate base course layer | 8d | 2026-10-28 A | 2026-12-02 | SDR-2-CON-RW-ZA-2020 | 40% | 8d | 2026-11-24 | 2026-12-02 | 28d | 0d | SIC- Cost [120756]; Dumper Operator [85.98 h]; Dumper Truck [90 h]; Grader [62 h]; Grader Operator [85.98 h]; Loader [20.89 h]; Loader Operator [85.98 h]; Un-Skilled Labor [85.98 h]; Supervisor [85.98 h]; Skilled Labor [85.98 h]; Water Tanker [40 h]; Water Tanker Operator [85.98 h] | 120,755.7 | BAS | Z A |
|  | 8 | **Demolition Work** |  | 2026-12-03 | 2026-12-05 |  |  |  |  |  |  |  |  |  |  |  |
| SDR-2-CON-RW-ZA-2060 |  | Milling of wearing course | 2d | 2026-12-03 | 2026-12-05 | SDR-2-CON-RW-ZA-2050 |  |  |  |  | 28d | 0d | SIC- Cost [28300.2]; Un-Skilled Labor [57.32 h]; Supervisor [57.32 h]; Skilled Labor [57.32 h]; Water Tanker [40 h]; Water Tanker Operator [57.32 h]; Road Milling Machine [60 h]; Road Milling Machine Operator [60 h]; Sweeper Machine [40 h]; Sweeper Machine Operator [57.32 h] | 29,076.6 |  | Z A |
|  | 3 | **Asphalt Works** |  | 2026-12-06 | 2026-12-31 |  |  |  |  |  |  |  |  |  |  |  |
| SDR-2-CON-RW-ZA-2070 |  | Asphalt works 1st Layer with MC-01 | 10d | 2026-12-06 | 2026-12-16 | SDR-2-CON-RW-ZA-2050, SDR-2-CON-RW-ZA-2060, SDR-2-CON-RW-ZA-1890 FS+3d |  |  |  |  | 28d | 0d | SIC- Cost [503392]; Dumper Operator [85.98 h]; Dumper Truck [90 h]; Supervisor [9.63 h]; Sweeper Machine [40 h]; Sweeper Machine Operator [38.53 h]; Pneumatic Tire Roller [40 h]; Pneumatic Roller Operator [85.98 h]; Asphalt Paver [23.3 h]; Asphalt Paver Operator [85.98 h] | 503,392.37 | ASP | Z A |
| SDR-2-CON-RW-ZA-2080 |  | Asphalt works 2nd layer with RC-02 | 13d | 2026-12-17 | 2026-12-31 | SDR-2-CON-RW-ZA-2070 |  |  |  |  | 28d | 0d | SIC- Cost [299797]; Dumper Operator [60.34 h]; Dumper Truck [90 h]; Supervisor [10.06 h]; Sweeper Machine [40 h]; Sweeper Machine Operator [60.34 h]; Pneumatic Tire Roller [58 h]; Pneumatic Roller Operator [60.34 h]; Asphalt Paver [20 h]; Asphalt Paver Operator [48.27 h] | 299,796.96 |  | Z A |
|  | 4 | **Kerbstone Installation** |  | 2026-11-24 | 2027-01-25 |  |  |  |  |  |  |  |  |  |  |  |
| SDR-2-CON-RW-ZA-3470 |  | Kerbstone Installation "all Types" Part 1 | 18d | 2026-11-24 | 2026-12-14 | SDR-2-CON-RW-ZA-2020 |  |  |  |  | 17d | 0d | SIC- Cost; Un-Skilled Labor [60.34 h]; Supervisor [10.06 h]; Skilled Labor [60.34 h] | 32,835.82 |  | Z A |
| SDR-2-CON-RW-ZA-2090 |  | Kerbstone Installation "all Types" Part 2 | 21d | 2027-01-02 | 2027-01-25 | SDR-2-CON-RW-ZA-2080 |  |  |  |  | 28d | 0d | SIC- Cost; Un-Skilled Labor [60.34 h]; Supervisor [10.06 h]; Skilled Labor [60.34 h] | 254,068.7 |  | Z A |
|  | 5 | **Interlock Installation** |  | 2027-01-26 | 2027-02-18 |  |  |  |  |  |  |  |  |  |  |  |
| SDR-2-CON-RW-ZA-2100 |  | Interlock Installation | 21d | 2027-01-26 | 2027-02-18 | SDR-2-CON-RW-ZA-2090 |  |  |  |  | 28d | 0d | SIC- Cost; Un-Skilled Labor [60.34 h]; Supervisor [10.06 h]; Skilled Labor [60.34 h] | 149,308.57 |  | Z A |
|  | 6 | **Road Marking** |  | 2027-02-20 | 2027-03-29 |  |  |  |  |  |  |  |  |  |  |  |
| SDR-2-CON-RW-ZA-2110 |  | Retroreflective Thermoplastic White Traffic lines | 14d | 2027-02-20 | 2027-03-08 | SDR-2-CON-RW-ZA-2100 |  |  |  |  | 28d | 0d | SIC- Cost [12688.5]; Un-Skilled Labor [19.11 h]; Supervisor [19.11 h]; Skilled Labor [19.11 h] | 12,688.52 |  | Z A |
| SDR-2-CON-RW-ZA-2120 |  | Retroreflective Thermoplastic Yellow, Traffic lines | 14d | 2027-03-14 | 2027-03-29 | SDR-2-CON-RW-ZA-2110 |  |  |  |  | 28d | 0d | SIC- Cost [9772.06]; Un-Skilled Labor [19.11 h]; Supervisor [19.11 h]; Skilled Labor [19.11 h] | 9,772.06 |  | Z A |

| ID | WBS | Activity | Duration | Start | Finish | Predecessors | Complete | Remaining | Planned start | Planned finish | Total float | Free float | Resources | Cost | ZONE A | ROAD WORK |
| --- | --- | --- | --- | --- | --- | --- | --- | --- | --- | --- | --- | --- | --- | --- | --- | --- |
|  | 7 | **Traffic Signage** |  | 2027-03-30 | 2027-04-21 |  |  |  |  |  |  |  |  |  |  |  |
| SDR-2-CON-RW-ZA-2130 |  | Single post-Traffic signs Installation | 20d | 2027-03-30 | 2027-04-21 | SDR-2-CON-RW-ZA-2120, SDR-2-CON-RW-ZA-2040 |  |  |  |  | 28d | 27d | SIC- Cost [5283.72]; Un-Skilled Labor [19.11 h]; Supervisor [19.11 h]; Skilled Labor [19.11 h] | 5,283.73 | Z A |  |
|  | 6 | **ROAD WORKS IN ( PH2-A-MCF0 )** |  | 2026-04-08 | 2027-04-08 |  |  |  |  |  |  |  |  |  |  |  |
|  | 1 | **Earth Works Road** |  | 2026-05-02 | 2026-06-21 |  |  |  |  |  |  |  |  |  |  |  |
| SDR-2-CON-RW-ZA-2140 |  | Roadway Excavation and cuttings | 20d | 2026-05-02 A | 2026-06-21 A | SDR-2-PRO-DES-C-1000, SDR-2-CON-RW-ZA-2000 SS+3d | 100% |  | 2026-06-03 | 2026-06-25 |  |  | SIC- Cost [1563524]; Excavator [73 h]; Excavator Operator [82.84 h]; Dumper Operator [143.3 h]; Dumper Truck [150 h]; Grader [137 h]; Grader Operator [143.3 h]; Loader [82 h]; Loader Operator [143.3 h]; Un-Skilled Labor [10.03 h]; Supervisor [10.03 h]; Skilled Labor [10.03 h] | 23,081.48 | Z A | CUT |
|  | 10 | **Backfilling Works** |  | 2026-04-08 | 2026-06-11 |  |  |  |  |  |  |  |  |  |  |  |
| SDR-2-CON-RW-ZA-3200 |  | Embankments to the Road 1 Layer | 21d | 2026-04-08 A | 2026-05-13 A | SDR-2-CON-RW-ZA-2140 | 100% |  | 2026-06-27 | 2026-07-20 |  |  | SIC- Cost; Excavator [20 h]; Excavator Operator [65.32 h]; Dumper Operator [186.25 h]; Dumper Truck [170.75 h]; Grader [75 h]; Grader Operator [186.25 h]; Loader [80 h]; Loader Operator [80.22 h]; Un-Skilled Labor [150.16 h]; Supervisor [70.15 h]; Skilled Labor [70.15 h] | 109,446.69 | Z A | BF |
| SDR-2-CON-RW-ZA-3210 |  | Embankments to the Road 2 Layer | 21d | 2026-05-14 A | 2026-05-24 A | SDR-2-CON-RW-ZA-3200 | 100% |  | 2026-07-21 | 2026-08-13 |  |  | SIC- Cost; Excavator [20 h]; Excavator Operator [186.25 h]; Dumper Operator [163.75 h]; Dumper Truck [170.75 h]; Grader [75 h]; Grader Operator [186.25 h]; Loader [51.46 h]; Loader Operator [50.09 h]; Un-Skilled Labor [57.79 h]; Supervisor [38.53 h]; Skilled Labor [57.79 h] | 125,081.93 | Z A | BF |
| SDR-2-CON-RW-ZA-3220 |  | Embankments to the Road 3 Layer | 19d | 2026-05-24 A | 2026-06-06 A | SDR-2-CON-RW-ZA-3210 | 100% |  | 2026-08-15 | 2026-09-05 |  |  | SIC- Cost; Excavator [20 h]; Excavator Operator [186.19 h]; Dumper Operator [186.25 h]; Dumper Truck [170.75 h]; Grader [75 h]; Grader Operator [186.19 h]; Loader [40 h]; Loader Operator [191.07 h]; Un-Skilled Labor [191.08 h]; Supervisor [191.08 h]; Skilled Labor [191.08 h] | 453,422 | Z A | BF |
| SDR-2-CON-RW-ZA-2150 |  | Embankments to the Road 4 Layer | 19d | 2026-06-08 A | 2026-06-11 A | SDR-2-CON-RW-ZA-3220 | 100% |  | 2026-09-06 | 2026-09-28 |  |  | SIC- Cost; Excavator [20 h]; Excavator Operator [60.1 h]; Dumper Operator [186.19 h]; Dumper Truck [73.16 h]; Grader [75 h]; Grader Operator [186.25 h]; Loader [43.16 h]; Loader Operator [191.07 h]; Un-Skilled Labor [191.08 h]; Supervisor [191.08 h]; Skilled Labor [191.08 h] | 875,573.51 | Z A | BF |
|  | 11 | **Subgrade** |  | 2026-10-05 | 2026-10-28 |  |  |  |  |  |  |  |  |  |  |  |
| SDR-2-CON-RW-ZA-2160 |  | Subgrade layer works | 20d | 2026-10-05 A | 2026-10-28 A | SDR-2-CON-RW-ZA-2150 | 100% |  | 2026-10-05 | 2026-10-27 |  |  | SIC- Cost; Excavator [6 h]; Excavator Operator [85.98 h]; Dumper Operator [85.98 h]; Dumper Truck [90 h]; Grader [90 h]; Grader Operator [85.98 h]; Loader [20 h]; Loader Operator [85.98 h]; Un-Skilled Labor [38.53 h]; Supervisor [9.63 h]; Skilled Labor [38.53 h]; Water Tanker [40 h]; Water Tanker Operator [38.53 h] | 1,025,845.67 | Z A | SUB |
|  | 9 | **Earth Works Plot** |  | 2026-06-01 | 2026-08-12 |  |  |  |  |  |  |  |  |  |  |  |
| SDR-2-CON-RW-ZA-3230 |  | Embankments to the Plot 1 Layer | 21d | 2026-06-01 A | 2026-08-06 A | SDR-2-CON-RW-ZA-2170 | 100% |  | 2026-11-21 | 2026-12-14 |  |  | SIC- Cost; Excavator [15 h]; Excavator Operator [40.74 h]; Dumper Operator [40.74 h]; Dumper Truck [30 h]; Grader [30 h]; Grader Operator [40.74 h]; Loader [88.4 h]; Loader Operator [40.74 h]; Un-Skilled Labor [40.74 h]; Supervisor [40.74 h]; Skilled Labor [40.74 h] | 39,546.33 | Z A |  |
| SDR-2-CON-RW-ZA-2170 |  | Plot Excavation for cuttings (all types of soil) | 20d | 2026-07-13 A | 2026-08-11 A | SDR-2-CON-RW-ZA-2140 | 100% |  | 2026-10-28 | 2026-11-19 |  |  | SIC- Cost [82090]; Excavator [7.8 h]; Excavator Operator [95.54 h]; Dumper Operator [95.54 h]; Dumper Truck [50 h]; Grader [60 h]; Grader Operator [95.54 h]; Loader [41.8 h]; Loader Operator [95.54 h]; Un-Skilled Labor [95.54 h]; Supervisor [95.54 h]; Skilled Labor [95.54 h] | 82,090.04 | Z A |  |
| SDR-2-CON-RW-ZA-2180 |  | Embankments to the Plot 2 Layer | 21d | 2026-08-03 A | 2026-08-12 A | SDR-2-CON-RW-ZA-3230 FS+1d, SDR-2-CON-RW-ZA-3110, SDR-2-CON-RW-ZA-1900 SS | 100% |  | 2026-12-21 | 2027-01-13 |  |  | SIC- Cost; Excavator [15 h]; Excavator Operator [40.74 h]; Dumper Operator [40.74 h]; Dumper Truck [292 h]; Grader [30 h]; Grader Operator [40.74 h]; Loader [21.14 h]; Loader Operator [40.74 h]; Un-Skilled Labor [40.74 h]; Supervisor [40.74 h]; Skilled Labor [40.74 h] | 39,546.33 | Z A |  |
|  | 2 | **Base Course** |  | 2026-10-22 | 2026-11-14 |  |  |  |  |  |  |  |  |  |  |  |
| SDR-2-CON-RW-ZA-2190 |  | Aggregate base course layer | 12d | 2026-10-22 A | 2026-11-14 | SDR-2-CON-RW-ZA-2160 | 75% | 12d | 2026-11-01 | 2026-11-14 | 47d | 8d | SIC- Cost [120756]; Dumper Operator [85.98 h]; Dumper Truck [90 h]; Grader [90 h]; Grader Operator [85.98 h]; Loader [47.14 h]; Loader Operator [85.98 h]; Un-Skilled Labor [85.98 h]; Supervisor [85.98 h]; Skilled Labor [85.98 h]; Water Tanker [43 h]; Water Tanker Operator [85.98 h] | 120,755.7 | Z A | BAS |
|  | 8 | **Demolition Work** |  | 2026-11-24 | 2026-11-25 |  |  |  |  |  |  |  |  |  |  |  |
| SDR-2-CON-RW-ZA-2200 |  | Milling of wearing course | 2d | 2026-11-24 | 2026-11-25 | SDR-2-CON-RW-ZA-3470 SS, SDR-2-CON-RW-ZA-2190 |  |  |  |  | 39d | 0d | SIC- Cost [28300.2]; Un-Skilled Labor [57.32 h]; Supervisor [57.32 h]; Skilled Labor [57.32 h]; Water Tanker [40 h]; Water Tanker Operator [57.32 h]; Road Milling Machine [60 h]; Road Milling Machine Operator [60 h]; Sweeper Machine [40 h]; Sweeper Machine Operator [57.32 h] | 29,076.6 | Z A |  |
|  | 3 | **Asphalt Works** |  | 2026-11-26 | 2026-12-19 |  |  |  |  |  |  |  |  |  |  |  |
| SDR-2-CON-RW-ZA-2210 |  | Asphalt works 1st Layer with MC-01 | 8d | 2026-11-26 | 2026-12-05 | SDR-2-CON-RW-ZA-2030 SS, SDR-2-CON-RW-ZA-3150 SS, SDR-2-CON-RW-ZA-2200 |  |  |  |  | 39d | 0d | SIC- Cost [503392]; Dumper Operator [85.98 h]; Dumper Truck [90 h]; Supervisor [85.98 h]; Sweeper Machine [40 h]; Sweeper Machine Operator [85.98 h]; Pneumatic Tire Roller [170 h]; Pneumatic Roller Operator [85.98 h]; Asphalt Paver [23.3 h]; Asphalt Paver Operator [85.98 h] | 503,392.37 | Z A | ASP |
| SDR-2-CON-RW-ZA-2220 |  | Asphalt works 2nd layer with RC-02 | 12d | 2026-12-06 | 2026-12-19 | SDR-2-CON-RW-ZA-2210 |  |  |  |  | 39d | 0d | SIC- Cost [299797]; Dumper Operator [60.34 h]; Dumper Truck [90 h]; Supervisor [10.06 h]; Sweeper Machine [40 h]; Sweeper Machine Operator [60.34 h]; Pneumatic Tire Roller [58 h]; Pneumatic Roller Operator [85.98 h]; Asphalt Paver [20 h]; Asphalt Paver Operator [48.27 h] | 299,796.96 | Z A |  |
|  | 4 | **Kerbstone Installation** |  | 2026-11-01 | 2027-01-12 |  |  |  |  |  |  |  |  |  |  |  |
| SDR-2-CON-RW-ZA-3480 |  | Kerbstone Installation "all Types" Part 1 | 18d | 2026-11-01 | 2026-11-21 | SDR-2-CON-RW-ZA-2160 |  |  |  |  | 38d | 7d | SIC- Cost; Un-Skilled Labor [60.34 h]; Supervisor [10.06 h]; Skilled Labor [60.34 h] | 32,835.82 | Z A |  |
| SDR-2-CON-RW-ZA-2230 |  | Kerbstone Installation "all Types" Part 2 | 21d | 2026-12-20 | 2027-01-12 | SDR-2-CON-RW-ZA-2220 |  |  |  |  | 39d | 0d | SIC- Cost; Un-Skilled Labor [60.34 h]; Supervisor [10.06 h]; Skilled Labor [60.34 h] | 254,068.7 | Z A |  |

| ID | WBS | Activity | Duration | Start | Finish | Predecessors | Complete | Remaining | Planned start | Planned finish | Total float | Free float | Resources | Cost | ZONE A | ROAD WORK |
| --- | --- | --- | --- | --- | --- | --- | --- | --- | --- | --- | --- | --- | --- | --- | --- | --- |
|  | 5 | **Interlock Installation** |  | 2027-01-13 | 2027-02-06 |  |  |  |  |  |  |  |  |  |  |  |
| SDR-2-CON-RW-ZA-2240 |  | Interlock Installation | 21d | 2027-01-13 | 2027-02-06 | SDR-2-CON-RW-ZA-2230 |  |  |  |  | 39d | 0d | SIC- Cost [149309]; Un-Skilled Labor [60.34 h]; Supervisor [10.06 h]; Skilled Labor [60.34 h] | 149,308.57 | Z A |  |
|  | 6 | **Road Marking** |  | 2027-02-07 | 2027-03-16 |  |  |  |  |  |  |  |  |  |  |  |
| SDR-2-CON-RW-ZA-2250 |  | Retroreflective Thermoplastic White Traffic lines | 14d | 2027-02-07 | 2027-02-23 | SDR-2-CON-RW-ZA-2240 |  |  |  |  | 39d | 0d | SIC- Cost [12688.5]; Un-Skilled Labor [19.11 h]; Supervisor [19.11 h]; Skilled Labor [19.11 h] | 12,688.52 | Z A |  |
| SDR-2-CON-RW-ZA-2260 |  | Retroreflective Thermoplastic Yellow, Traffic lines | 14d | 2027-02-24 | 2027-03-16 | SDR-2-CON-RW-ZA-2250 |  |  |  |  | 39d | 0d | SIC- Cost [9772.06]; Un-Skilled Labor [19.11 h]; Supervisor [19.11 h]; Skilled Labor [19.11 h] | 9,772.06 | Z A |  |
|  | 7 | **Traffic Signage** |  | 2027-03-17 | 2027-04-08 |  |  |  |  |  |  |  |  |  |  |  |
| SDR-2-CON-RW-ZA-2270 |  | Single post-Traffic signs Installation | 20d | 2027-03-17 | 2027-04-08 | SDR-2-CON-RW-ZA-2260, SDR-2-CON-RW-ZA-2180 FS+1d |  |  |  |  | 39d | 38d | SIC- Cost [5283.72]; Un-Skilled Labor [19.11 h]; Supervisor [19.11 h]; Skilled Labor [19.11 h] | 5,283.73 | Z A |  |
|  | 9 | **ROAD WORKS IN ( PH2-A-MCG0 )** |  | 2026-04-22 | 2027-03-17 |  |  |  |  |  |  |  |  |  |  |  |
|  | 1 | **Earth Works Road** |  | 2026-05-02 | 2026-05-24 |  |  |  |  |  |  |  |  |  |  |  |
| SDR-2-CON-RW-ZA-2280 |  | Roadway Excavation and cuttings | 20d | 2026-05-02 A | 2026-05-24 A | SDR-2-CON-RW-ZA-2140 SS | 100% |  | 2026-06-03 | 2026-06-25 |  |  | SIC- Cost [1563524]; Excavator [20 h]; Excavator Operator [82.84 h]; Dumper Operator [143.3 h]; Dumper Truck [150 h]; Grader [70 h]; Grader Operator [143.3 h]; Loader [82 h]; Loader Operator [143.3 h]; Un-Skilled Labor [10.03 h]; Supervisor [10.03 h]; Skilled Labor [10.03 h] | 23,081.48 | Z A | CUT |
|  | 10 | **Backfilling Works** |  | 2026-04-22 | 2026-06-15 |  |  |  |  |  |  |  |  |  |  |  |
| SDR-2-CON-RW-ZA-3240 |  | Embankments to the Road 1 Layer | 21d | 2026-04-22 A | 2026-05-13 A | SDR-2-CON-RW-ZA-2280 | 100% |  | 2026-06-27 | 2026-07-20 |  |  | SIC- Cost; Excavator [20 h]; Excavator Operator [193.45 h]; Dumper Operator [193.45 h]; Dumper Truck [170.75 h]; Grader [75 h]; Grader Operator [193.45 h]; Loader [80 h]; Loader Operator [72.53 h]; Un-Skilled Labor [193.45 h]; Supervisor [62.45 h]; Skilled Labor [62.45 h] | 109,446.69 | Z A | BF |
| SDR-2-CON-RW-ZA-3250 |  | Embankments to the Road 2 Layer | 21d | 2026-05-13 A | 2026-05-25 A | SDR-2-CON-RW-ZA-3240 | 100% |  | 2026-07-21 | 2026-08-13 |  |  | SIC- Cost; Excavator [20 h]; Excavator Operator [19.26 h]; Dumper Operator [193.45 h]; Dumper Truck [170.75 h]; Grader [75 h]; Grader Operator [72.24 h]; Loader [49.9 h]; Loader Operator [48.16 h]; Un-Skilled Labor [57.79 h]; Supervisor [19.26 h]; Skilled Labor [57.79 h] | 125,081.93 | Z A | BF |
| SDR-2-CON-RW-ZA-2290 |  | Embankments to the Road 4 Layer | 21d | 2026-05-24 A | 2026-06-08 A | SDR-2-CON-RW-ZA-3260 | 100% |  | 2026-09-08 | 2026-10-03 |  |  | SIC- Cost; Excavator [20 h]; Excavator Operator [79.07 h]; Dumper Operator [193.45 h]; Dumper Truck [72.27 h]; Grader [79.57 h]; Grader Operator [193.45 h]; Loader [42.27 h]; Loader Operator [193.45 h]; Un-Skilled Labor [193.45 h]; Supervisor [193.45 h]; Skilled Labor [193.45 h] | 875,573.51 | Z A | BF |
| SDR-2-CON-RW-ZA-3260 |  | Embankments to the Road 3 Layer | 21d | 2026-05-24 A | 2026-06-15 A | SDR-2-CON-RW-ZA-3250 | 100% |  | 2026-08-15 | 2026-09-07 |  |  | SIC- Cost; Excavator [20 h]; Excavator Operator [19.26 h]; Dumper Operator [163.75 h]; Dumper Truck [170.75 h]; Grader [75 h]; Grader Operator [72.24 h]; Loader [40 h]; Loader Operator [38.53 h]; Un-Skilled Labor [77.06 h]; Supervisor [38.53 h]; Skilled Labor [77.06 h] | 453,422 | Z A | BF |
|  | 11 | **Subgrade** |  | 2026-10-05 | 2026-10-22 |  |  |  |  |  |  |  |  |  |  |  |
| SDR-2-CON-RW-ZA-2300 |  | Subgrade layer works | 18d | 2026-10-05 A | 2026-10-22 A | SDR-2-CON-RW-ZA-2290 | 100% |  | 2026-10-05 | 2026-10-25 |  |  | SIC- Cost; Excavator [13 h]; Excavator Operator [12.52 h]; Dumper Operator [67.43 h]; Dumper Truck [70 h]; Grader [50 h]; Grader Operator [48.16 h]; Loader [20 h]; Loader Operator [19.26 h]; Un-Skilled Labor [38.53 h]; Supervisor [9.63 h]; Skilled Labor [38.53 h]; Water Tanker [90 h]; Water Tanker Operator [85.98 h] | 1,025,845.67 | Z A | SUB |
|  | 9 | **Earth Works Plot** |  | 2026-06-01 | 2026-10-19 |  |  |  |  |  |  |  |  |  |  |  |
| SDR-2-CON-RW-ZA-3270 |  | Embankments to the Plot 1 Layer | 21d | 2026-06-01 A | 2026-06-23 A | SDR-2-CON-RW-ZA-2310 SS | 100% |  | 2026-11-18 | 2026-12-12 |  |  | SIC- Cost; Excavator [22.43 h]; Excavator Operator [22.15 h]; Dumper Operator [57.79 h]; Dumper Truck [60 h]; Grader [60 h]; Grader Operator [57.79 h]; Loader [36.57 h]; Loader Operator [34.68 h]; Un-Skilled Labor [38.53 h]; Supervisor [9.63 h]; Skilled Labor [38.53 h] | 39,546.33 | Z A |  |
| SDR-2-CON-RW-ZA-2310 |  | Plot Excavation for cuttings (all types of soil) | 21d | 2026-07-13 A | 2026-10-17 A | SDR-2-CON-RW-ZA-2280, SDR-2-CON-RW-ZA-2300 FF | 100% |  | 2026-10-25 | 2026-11-17 |  |  | SIC- Cost [82090]; Excavator [6 h]; Excavator Operator [95.54 h]; Dumper Operator [95.54 h]; Dumper Truck [60 h]; Grader [100 h]; Grader Operator [95.54 h]; Loader [21.2 h]; Loader Operator [95.54 h]; Un-Skilled Labor [95.54 h]; Supervisor [95.54 h]; Skilled Labor [95.54 h] | 82,090.04 | Z A |  |
| SDR-2-CON-RW-ZA-2320 |  | Embankments to the Plot 2 Layer | 21d | 2026-07-27 A | 2026-10-19 A | SDR-2-CON-RW-ZA-3270, SDR-2-CON-RW-ZA-3270 FF, SDR-2-CON-RW-ZA-3230, SDR-2-CON-RW-ZA-3190 FF | 100% |  | 2026-12-15 | 2027-01-07 |  |  | SIC- Cost; Excavator [16.75 h]; Excavator Operator [21.19 h]; Dumper Operator [57.79 h]; Dumper Truck [60 h]; Grader [60 h]; Grader Operator [57.79 h]; Loader [22.29 h]; Loader Operator [22.15 h]; Un-Skilled Labor [38.53 h]; Supervisor [9.63 h]; Skilled Labor [38.53 h] | 39,546.33 | Z A |  |
|  | 2 | **Base Course** |  | 2026-10-24 | 2026-11-08 |  |  |  |  |  |  |  |  |  |  |  |
| SDR-2-CON-RW-ZA-2330 |  | Aggregate base course layer | 7d | 2026-10-24 A | 2026-11-08 | SDR-2-CON-RW-ZA-2300 | 65% | 7d | 2026-11-16 | 2026-11-23 | 31d | 0d | SIC- Cost [120756]; Dumper Operator [40.74 h]; Dumper Truck [30 h]; Grader [30 h]; Grader Operator [40.74 h]; Loader [30 h]; Loader Operator [40.74 h]; Un-Skilled Labor [40.74 h]; Supervisor [40.74 h]; Skilled Labor [40.74 h]; Water Tanker [30 h]; Water Tanker Operator [40.74 h] | 120,755.7 | Z A | BAS |
|  | 8 | **Demolition Work** |  | 2026-11-09 | 2026-11-10 |  |  |  |  |  |  |  |  |  |  |  |
| SDR-2-CON-RW-ZA-2340 |  | Milling of wearing course | 2d | 2026-11-09 | 2026-11-10 | SDR-2-CON-RW-ZA-3480 SS, SDR-2-CON-RW-ZA-2330 |  |  |  |  | 31d | 0d | SIC- Cost [28300.2]; Un-Skilled Labor [57.32 h]; Supervisor [57.32 h]; Skilled Labor [57.32 h]; Water Tanker [40 h]; Water Tanker Operator [57.32 h]; Road Milling Machine [60 h]; Road Milling Machine Operator [60 h]; Sweeper Machine [40 h]; Sweeper Machine Operator [57.32 h] | 29,076.6 | Z A |  |

| ID | WBS | Activity | Duration | Start | Finish | Predecessors | Complete | Remaining | Planned start | Planned finish | Total float | Free float | Resources | Cost | ROAD WORK | ZONE A |
| --- | --- | --- | --- | --- | --- | --- | --- | --- | --- | --- | --- | --- | --- | --- | --- | --- |
|  | 3 | **Asphalt Works** |  | 2026-11-11 | 2026-11-26 |  |  |  |  |  |  |  |  |  |  |  |
| SDR-2-CON-RW-ZA-2350 |  | Asphalt works 1st Layer with MC-01 | 3d | 2026-11-11 | 2026-11-14 | SDR-2-CON-RW-ZA-3490 SS, SDR-2-CON-RW-ZA-2330, SDR-2-CON-RW-ZA-2340, SDR-2-CON-RW-ZA-2170 SS |  |  |  |  | 31d | 0d | SIC- Cost [503392]; Dumper Operator [85.98 h]; Dumper Truck [90 h]; Supervisor [85.98 h]; Sweeper Machine [40 h]; Sweeper Machine Operator [85.98 h]; Pneumatic Tire Roller [170 h]; Pneumatic Roller Operator [85.98 h]; Asphalt Paver [23.3 h]; Asphalt Paver Operator [85.98 h] | 503,392.37 | ASP | Z A |
| SDR-2-CON-RW-ZA-2360 |  | Asphalt works 2nd layer with RC-02 | 11d | 2026-11-15 | 2026-11-26 | SDR-2-CON-RW-ZA-2310, SDR-2-CON-RW-ZA-2350 |  |  |  |  | 46d | 0d | SIC- Cost [299797]; Dumper Operator [60.34 h]; Dumper Truck [334 h]; Supervisor [10.06 h]; Sweeper Machine [40 h]; Sweeper Machine Operator [60.34 h]; Pneumatic Tire Roller [58 h]; Pneumatic Roller Operator [60.34 h]; Asphalt Paver [20 h]; Asphalt Paver Operator [47.27 h] | 299,796.96 |  | Z A |
|  | 4 | **Kerbstone Installation** |  | 2026-11-01 | 2026-12-21 |  |  |  |  |  |  |  |  |  |  |  |
| SDR-2-CON-RW-ZA-3490 |  | Kerbstone Installation "all Types" Part 1 | 18d | 2026-11-01 | 2026-11-21 | SDR-2-CON-RW-ZA-2300 |  |  |  |  | 25d | 0d | SIC- Cost [286905]; Un-Skilled Labor [60.34 h]; Supervisor [10.06 h]; Skilled Labor [60.34 h] | 32,835.82 |  | Z A |
| SDR-2-CON-RW-ZA-2370 |  | Kerbstone Installation "all Types" Part 2 | 21d | 2026-11-28 | 2026-12-21 | SDR-2-CON-RW-ZA-2360 |  |  |  |  | 46d | 0d | SIC- Cost [286905]; Un-Skilled Labor [60.34 h]; Supervisor [10.06 h]; Skilled Labor [60.34 h] | 254,068.7 |  | Z A |
|  | 5 | **Interlock Installation** |  | 2026-12-22 | 2027-01-14 |  |  |  |  |  |  |  |  |  |  |  |
| SDR-2-CON-RW-ZA-2380 |  | Interlock Installation | 21d | 2026-12-22 | 2027-01-14 | SDR-2-CON-RW-ZA-2180 FS+4d, SDR-2-CON-RW-ZA-2370 |  |  |  |  | 47d | 0d | SIC- Cost [149309]; Un-Skilled Labor [38.53 h]; Supervisor [10.06 h]; Skilled Labor [38.53 h] | 149,308.57 |  | Z A |
|  | 6 | **Road Marking** |  | 2027-01-16 | 2027-02-16 |  |  |  |  |  |  |  |  |  |  |  |
| SDR-2-CON-RW-ZA-2390 |  | Retroreflective Thermoplastic White Traffic lines | 14d | 2027-01-16 | 2027-01-31 | SDR-2-CON-RW-ZA-2380 |  |  |  |  | 47d | 0d | SIC- Cost [12688.5]; Un-Skilled Labor [19.11 h]; Supervisor [19.11 h]; Skilled Labor [19.11 h] | 12,688.52 |  | Z A |
| SDR-2-CON-RW-ZA-2400 |  | Retroreflective Thermoplastic Yellow, Traffic lines | 14d | 2027-02-01 | 2027-02-16 | SDR-2-CON-RW-ZA-2390 |  |  |  |  | 47d | 0d | SIC- Cost [9772.06]; Un-Skilled Labor [19.11 h]; Supervisor [19.11 h]; Skilled Labor [19.11 h] | 9,772.06 |  | Z A |
|  | 7 | **Traffic Signage** |  | 2027-02-17 | 2027-03-17 |  |  |  |  |  |  |  |  |  |  |  |
| SDR-2-CON-RW-ZA-2410 |  | Single post-Traffic signs Installation | 20d | 2027-02-17 | 2027-03-17 | SDR-2-CON-RW-ZA-2320, SDR-2-CON-RW-ZA-2400, SDR-2-CON-RW-ZA-2320 SS+2d |  |  |  |  | 47d | 35d | SIC- Cost [5283.72]; Un-Skilled Labor [19.11 h]; Supervisor [19.11 h]; Skilled Labor [19.11 h] | 5,283.73 |  | Z A |
|  | 10 | **ROAD WORKS IN ( PH2-A-MCH0 )** |  | 2026-04-22 | 2027-04-17 |  |  |  |  |  |  |  |  |  |  |  |
|  | 1 | **Earth Works Road** |  | 2026-04-22 | 2026-05-02 |  |  |  |  |  |  |  |  |  |  |  |
| SDR-2-CON-RW-ZA-2420 |  | Roadway Excavation and cuttings | 21d | 2026-04-22 A | 2026-05-02 A | SDR-2-CON-RW-ZA-2280 SS | 100% |  | 2026-06-03 | 2026-06-27 |  |  | SIC- Cost [1563524]; Excavator [20 h]; Excavator Operator [92.92 h]; Dumper Operator [143.3 h]; Dumper Truck [150 h]; Grader [70 h]; Grader Operator [143.3 h]; Loader [82 h]; Loader Operator [143.3 h]; Un-Skilled Labor [10.03 h]; Supervisor [10.03 h]; Skilled Labor [10.03 h] | 23,081.48 | CUT | Z A |
|  | 10 | **Backfilling Works** |  | 2026-04-25 | 2026-06-15 |  |  |  |  |  |  |  |  |  |  |  |
| SDR-2-CON-RW-ZA-3280 |  | Embankments to the Road 1 Layer | 21d | 2026-04-25 A | 2026-05-07 A | SDR-2-CON-RW-ZA-2420 | 100% |  | 2026-06-28 | 2026-07-21 |  |  | SIC- Cost; Excavator [70 h]; Excavator Operator [543.17 h]; Dumper Operator [543.17 h]; Dumper Truck [356.67 h]; Grader [193.33 h]; Grader Operator [543.17 h]; Loader [80 h]; Loader Operator [140.08 h]; Un-Skilled Labor [434.23 h]; Supervisor [59.46 h]; Skilled Labor [69.53 h] | 109,446.69 | BF | Z A |
| SDR-2-CON-RW-ZA-3290 |  | Embankments to the Road 2 Layer | 21d | 2026-05-09 A | 2026-05-18 A | SDR-2-CON-RW-ZA-3280 | 100% |  | 2026-07-22 | 2026-08-15 |  |  | SIC- Cost; Excavator [70 h]; Excavator Operator [67.43 h]; Dumper Operator [543.17 h]; Dumper Truck [356.67 h]; Grader [117.14 h]; Grader Operator [113.66 h]; Loader [75.39 h]; Loader Operator [72.24 h]; Un-Skilled Labor [115.59 h]; Supervisor [57.79 h]; Skilled Labor [115.59 h] | 125,081.93 | BF | Z A |
| SDR-2-CON-RW-ZA-3300 |  | Embankments to the Road 3 Layer | 21d | 2026-05-18 A | 2026-05-31 A | SDR-2-CON-RW-ZA-3290 | 100% |  | 2026-08-16 | 2026-09-08 |  |  | SIC- Cost; Excavator [70 h]; Excavator Operator [543.17 h]; Dumper Operator [543.17 h]; Dumper Truck [356.67 h]; Grader [250 h]; Grader Operator [543.17 h]; Loader [40 h]; Loader Operator [543.17 h]; Un-Skilled Labor [543.17 h]; Supervisor [543.17 h]; Skilled Labor [543.17 h] | 453,422 | BF | Z A |
| SDR-2-CON-RW-ZA-2430 |  | Embankments to the Road 4 Layer | 21d | 2026-06-01 A | 2026-06-15 A | SDR-2-CON-RW-ZA-3300 | 100% |  | 2026-09-09 | 2026-10-04 |  |  | SIC- Cost; Excavator [70 h]; Excavator Operator [350.53 h]; Dumper Operator [543.17 h]; Dumper Truck [156.67 h]; Grader [62.38 h]; Grader Operator [543.17 h]; Loader [23.81 h]; Loader Operator [543.17 h]; Un-Skilled Labor [543.17 h]; Supervisor [543.17 h]; Skilled Labor [543.17 h] | 875,573.51 | BF | Z A |
|  | 11 | **Subgrade** |  | 2026-10-05 | 2026-11-09 |  |  |  |  |  |  |  |  |  |  |  |
| SDR-2-CON-RW-ZA-2440 |  | Subgrade layer works | 8d | 2026-10-05 A | 2026-11-09 | SDR-2-CON-RW-ZA-2430 | 25% | 8d | 2026-10-05 | 2026-10-13 | 6d | 0d | SIC- Cost [1025846]; Excavator [12 h]; Excavator Operator [67.9 h]; Dumper Operator [67.9 h]; Dumper Truck [50 h]; Grader [100 h]; Grader Operator [67.9 h]; Loader [39 h]; Loader Operator [95.54 h]; Un-Skilled Labor [67.9 h]; Supervisor [67.9 h]; Skilled Labor [67.9 h]; Water Tanker [50 h]; Water Tanker Operator [95.54 h] | 1,025,845.67 | SUB | Z A |
|  | 9 | **Earth Works Plot** |  | 2026-06-01 | 2026-11-25 |  |  |  |  |  |  |  |  |  |  |  |
| SDR-2-CON-RW-ZA-2450 |  | Plot Excavation for cuttings (all types of soil) | 21d | 2026-06-01 A | 2026-06-08 A | SDR-2-CON-RW-ZA-2420 | 100% |  | 2026-10-14 | 2026-11-07 |  |  | SIC- Cost [82090]; Excavator [6 h]; Excavator Operator [95.54 h]; Dumper Operator [95.54 h]; Dumper Truck [60 h]; Grader [301.62 h]; Grader Operator [95.54 h]; Loader [20 h]; Loader Operator [95.54 h]; Un-Skilled Labor [95.54 h]; Supervisor [95.54 h]; Skilled Labor [95.54 h] | 82,090.04 |  | Z A |
| SDR-2-CON-RW-ZA-3310 |  | Embankments to the Plot 1 Layer | 21d | 2026-06-01 A | 2026-11-01 | SDR-2-CON-RW-ZA-2450 | 85% | 1d | 2026-11-08 | 2026-12-01 | 37d | 0d | SIC- Cost; Excavator [14.24 h]; Excavator Operator [95.54 h]; Dumper Operator [95.54 h]; Dumper Truck [50 h]; Grader [50 h]; Grader Operator [95.54 h]; Loader [50 h]; Loader Operator [95.54 h]; Un-Skilled Labor [67.9 h]; Supervisor [67.9 h]; Skilled Labor [67.9 h] | 39,546.33 |  | Z A |
| SDR-2-CON-RW-ZA-2460 |  | Embankments to the Plot 2 Layer | 21d | 2026-10-05 A | 2026-11-25 | SDR-2-CON-RW-ZA-3310 | 30% | 21d | 2026-10-13 | 2026-11-05 | 37d | 17d | SIC- Cost; Excavator [10.27 h]; Excavator Operator [14.45 h]; Dumper Operator [48.16 h]; Dumper Truck [50 h]; Grader [318.57 h]; Grader Operator [48.16 h]; Loader [22.11 h]; Loader Operator [21.19 h]; Un-Skilled Labor [38.53 h]; Supervisor [9.63 h]; Skilled Labor [38.53 h] | 39,546.33 |  | Z A |

| ID | WBS | Activity | Duration | Start | Finish | Predecessors | Complete | Planned start | Planned finish | Total float | Free float | Resources | Cost | ROAD WORK | ZONE A |
| --- | --- | --- | --- | --- | --- | --- | --- | --- | --- | --- | --- | --- | --- | --- | --- |
|  | 2 | **Base Course** |  | 2026-11-10 | 2026-11-26 |  |  |  |  |  |  |  |  |  |  |
| SDR-2-CON-RW-ZA-2470 |  | Aggregate base course layer | 15d | 2026-11-10 | 2026-11-26 | SDR-2-CON-RW-ZA-2440 |  |  |  | 7d | 0d | SIC- Cost; Dumper Operator [85.98 h]; Dumper Truck [50 h]; Grader [50 h]; Grader Operator [48.16 h]; Loader [20 h]; Loader Operator [19.26 h]; Un-Skilled Labor [38.53 h]; Supervisor [9.63 h]; Skilled Labor [38.53 h]; Water Tanker [20 h]; Water Tanker Operator [19.26 h] | 120,755.7 | BAS | Z A |
|  | 8 | **Demolition Work** |  | 2026-11-28 | 2026-11-29 |  |  |  |  |  |  |  |  |  |  |
| SDR-2-CON-RW-ZA-2480 |  | Milling of wearing course | 2d | 2026-11-28 | 2026-11-29 | SDR-2-CON-RW-ZA-2470 |  |  |  | 7d | 1d | SIC- Cost; Un-Skilled Labor [57.32 h]; Supervisor [57.32 h]; Skilled Labor [57.32 h]; Water Tanker [40 h]; Water Tanker Operator [38.53 h]; Road Milling Machine [60 h]; Road Milling Machine Operator [60 h]; Sweeper Machine [60 h]; Sweeper Machine Operator [57.32 h] | 29,076.6 |  | Z A |
|  | 3 | **Asphalt Works** |  | 2026-12-01 | 2026-12-27 |  |  |  |  |  |  |  |  |  |  |
| SDR-2-CON-RW-ZA-2490 |  | Asphalt works 1st Layer with MC-01 | 12d | 2026-12-01 | 2026-12-14 | SDR-2-CON-RW-ZA-3500, SDR-2-CON-RW-ZA-2470, SDR-2-CON-RW-ZA-2480 |  |  |  | 6d | 0d | SIC- Cost [503392]; Dumper Operator [66.88 h]; Dumper Truck [70 h]; Supervisor [66.88 h]; Sweeper Machine [70 h]; Sweeper Machine Operator [66.88 h]; Pneumatic Tire Roller [170 h]; Pneumatic Roller Operator [66.88 h]; Asphalt Paver [23.3 h]; Asphalt Paver Operator [66.88 h] | 503,392.37 | ASP | Z A |
| SDR-2-CON-RW-ZA-2500 |  | Asphalt works 2nd layer with RC-02 | 11d | 2026-12-15 | 2026-12-27 | SDR-2-CON-RW-ZA-2490 |  |  |  | 6d | 0d | SIC- Cost; Dumper Operator [60.34 h]; Dumper Truck [70 h]; Supervisor [10.06 h]; Sweeper Machine [40 h]; Sweeper Machine Operator; Pneumatic Tire Roller [40 h]; Pneumatic Roller Operator [66.88 h]; Asphalt Paver [35 h]; Asphalt Paver Operator [35.2 h] | 299,796.96 |  | Z A |
|  | 4 | **Kerbstone Installation** |  | 2026-11-10 | 2027-01-20 |  |  |  |  |  |  |  |  |  |  |
| SDR-2-CON-RW-ZA-3500 |  | Kerbstone Installation "all Types" Part 1 | 18d | 2026-11-10 | 2026-11-30 | SDR-2-CON-RW-ZA-2440 |  |  |  | 6d | 0d | SIC- Cost [286905]; Un-Skilled Labor [38.53 h]; Supervisor [10.06 h]; Skilled Labor [38.53 h] | 32,835.82 |  | Z A |
| SDR-2-CON-RW-ZA-2510 |  | Kerbstone Installation "all Types" Part 2 | 21d | 2026-12-28 | 2027-01-20 | SDR-2-CON-RW-ZA-2500 |  |  |  | 6d | 0d | SIC- Cost [286905]; Un-Skilled Labor [38.53 h]; Supervisor [10.06 h]; Skilled Labor [38.53 h] | 254,068.7 |  | Z A |
|  | 5 | **Interlock Installation** |  | 2027-01-21 | 2027-02-14 |  |  |  |  |  |  |  |  |  |  |
| SDR-2-CON-RW-ZA-2520 |  | Interlock Installation | 21d | 2027-01-21 | 2027-02-14 | SDR-2-CON-RW-ZA-2040, SDR-2-CON-RW-ZA-2510 |  |  |  | 14d | 0d | SIC- Cost [149309]; Un-Skilled Labor [38.53 h]; Supervisor [10.06 h]; Skilled Labor [38.53 h] | 149,308.57 |  | Z A |
|  | 6 | **Road Marking** |  | 2027-02-15 | 2027-03-24 |  |  |  |  |  |  |  |  |  |  |
| SDR-2-CON-RW-ZA-2530 |  | Retroreflective Thermoplastic White Traffic lines | 14d | 2027-02-15 | 2027-03-03 | SDR-2-CON-RW-ZA-2520 |  |  |  | 14d | 0d | SIC- Cost [12688.5]; Un-Skilled Labor [19.11 h]; Supervisor [19.11 h]; Skilled Labor [19.11 h] | 12,688.52 |  | Z A |
| SDR-2-CON-RW-ZA-2540 |  | Retroreflective Thermoplastic Yellow, Traffic lines | 14d | 2027-03-04 | 2027-03-24 | SDR-2-CON-RW-ZA-2530 |  |  |  | 14d | 0d | SIC- Cost [9772.06]; Un-Skilled Labor [19.11 h]; Supervisor [19.11 h]; Skilled Labor [19.11 h] | 9,772.06 |  | Z A |
|  | 7 | **Traffic Signage** |  | 2027-03-25 | 2027-04-17 |  |  |  |  |  |  |  |  |  |  |
| SDR-2-CON-RW-ZA-2550 |  | Single post-Traffic signs Installation | 20d | 2027-03-25 | 2027-04-17 | SDR-2-CON-RW-ZA-2540, SDR-2-CON-RW-ZA-2460 |  |  |  | 14d | 11d | SIC- Cost [5283.72]; Un-Skilled Labor [19.11 h]; Supervisor [19.11 h]; Skilled Labor [19.11 h] | 5,283.73 |  | Z A |
|  | 11 | **ROAD WORKS IN ( PH2-ART-MC00 )** |  | 2026-04-28 | 2027-03-07 |  |  |  |  |  |  |  |  |  |  |
|  | 1 | **Earth Works Road** |  | 2026-04-28 | 2026-07-20 |  |  |  |  |  |  |  |  |  |  |
| SDR-2-CON-RW-ZA-2560 |  | Roadway Excavation and cuttings | 21d | 2026-04-28 A | 2026-07-20 A | SDR-2-CON-RW-ZA-2420 SS | 100% | 2026-06-03 | 2026-06-27 |  |  | SIC- Cost [1563524]; Excavator [20 h]; Excavator Operator [92.92 h]; Dumper Operator [143.3 h]; Dumper Truck [150 h]; Grader [70 h]; Grader Operator [143.3 h]; Loader [82 h]; Loader Operator [143.3 h]; Un-Skilled Labor [10.03 h]; Supervisor [10.03 h]; Skilled Labor [10.03 h] | 23,081.48 | CUT |  |
|  | 10 | **Backfilling Works** |  | 2026-06-01 | 2026-06-28 |  |  |  |  |  |  |  |  |  |  |
| SDR-2-CON-RW-ZA-3320 |  | Embankments to the Road 1 Layer | 21d | 2026-06-01 A | 2026-06-08 A | SDR-2-CON-RW-ZA-2560 | 100% | 2026-06-28 | 2026-07-21 |  |  | SIC- Cost; Excavator [43.99 h]; Excavator Operator [67.9 h]; Dumper Operator [67.9 h]; Dumper Truck [50 h]; Grader [50 h]; Grader Operator [67.9 h]; Loader [50 h]; Loader Operator [67.9 h]; Un-Skilled Labor [67.9 h]; Supervisor [67.9 h]; Skilled Labor [67.9 h] | 109,446.69 | BF |  |
| SDR-2-CON-RW-ZA-3330 |  | Embankments to the Road 2 Layer | 21d | 2026-06-08 A | 2026-06-15 A | SDR-2-CON-RW-ZA-3320 | 100% | 2026-07-22 | 2026-08-15 |  |  | SIC- Cost; Excavator [43.99 h]; Excavator Operator [67.9 h]; Dumper Operator [67.9 h]; Dumper Truck [50 h]; Grader [50 h]; Grader Operator [67.9 h]; Loader [50 h]; Loader Operator [67.9 h]; Un-Skilled Labor [67.9 h]; Supervisor [67.9 h]; Skilled Labor [67.9 h] | 125,081.93 | BF |  |
| SDR-2-CON-RW-ZA-3340 |  | Embankments to the Road 3 Layer | 21d | 2026-06-15 A | 2026-06-22 A | SDR-2-CON-RW-ZA-3330 | 100% | 2026-08-16 | 2026-09-08 |  |  | SIC- Cost; Excavator [43.99 h]; Excavator Operator [67.9 h]; Dumper Operator [67.9 h]; Dumper Truck [50 h]; Grader [50 h]; Grader Operator [67.9 h]; Loader [50 h]; Loader Operator [67.9 h]; Un-Skilled Labor [67.9 h]; Supervisor [67.9 h]; Skilled Labor [67.9 h] | 453,422 | BF |  |
| SDR-2-CON-RW-ZA-2570 |  | Embankments to the Road 4 Layer | 21d | 2026-06-22 A | 2026-06-28 A | SDR-2-CON-RW-ZA-3340 | 100% | 2026-09-09 | 2026-10-04 |  |  | SIC- Cost; Excavator [43.99 h]; Excavator Operator [67.9 h]; Dumper Operator [67.9 h]; Dumper Truck [50 h]; Grader [50 h]; Grader Operator [67.9 h]; Loader [23 h]; Loader Operator [67.9 h]; Un-Skilled Labor [67.9 h]; Supervisor [67.9 h]; Skilled Labor [67.9 h] | 875,573.51 | BF |  |

| ID | WBS | Activity | Duration | Start | Finish | Predecessors | Complete | Remaining | Planned start | Planned finish | Total float | Free float | Resources | Cost | ROAD WORK | ZONE A |
| --- | --- | --- | --- | --- | --- | --- | --- | --- | --- | --- | --- | --- | --- | --- | --- | --- |
|  | 11 | **Subgrade** |  | 2026-08-11 | 2026-09-17 |  |  |  |  |  |  |  |  |  |  |  |
| SDR-2-CON-RW-ZA-2580 |  | Subgrade layer works | 13d | 2026-08-11 A | 2026-09-17 A | SDR-2-CON-RW-ZA-2570 | 100% |  | 2026-10-05 | 2026-10-19 |  |  | SIC- Cost [1025846]; Excavator [7.75 h]; Excavator Operator [76.43 h]; Dumper Operator [67.9 h]; Dumper Truck [50 h]; Grader [50 h]; Grader Operator [76.43 h]; Loader [20 h]; Loader Operator [76.43 h]; Un-Skilled Labor [76.43 h]; Supervisor [76.43 h]; Skilled Labor [76.43 h]; Water Tanker [47 h]; Water Tanker Operator [76.43 h] | 1,025,845.67 | SUB |  |
|  | 9 | **Earth Works Plot** |  | 2026-06-07 | 2026-06-25 |  |  |  |  |  |  |  |  |  |  |  |
| SDR-2-CON-RW-ZA-3350 |  | Embankments to the Plot 1 Layer | 21d | 2026-06-07 A | 2026-06-16 A | SDR-2-CON-RW-ZA-2590 | 100% |  | 2026-11-14 | 2026-12-07 |  |  | SIC- Cost; Excavator [14.43 h]; Excavator Operator [67.9 h]; Dumper Operator [95.54 h]; Dumper Truck [60 h]; Grader [60 h]; Grader Operator [67.9 h]; Loader [36.57 h]; Loader Operator [95.54 h]; Un-Skilled Labor [38.53 h]; Supervisor [38.53 h]; Skilled Labor [38.53 h] | 39,546.33 |  |  |
| SDR-2-CON-RW-ZA-2590 |  | Plot Excavation for cuttings (all types of soil) | 21d | 2026-06-08 A | 2026-06-15 A | SDR-2-CON-RW-ZA-2560, SDR-2-CON-RW-ZA-2580 | 100% |  | 2026-10-20 | 2026-11-12 |  |  | SIC- Cost [82090]; Excavator [6 h]; Excavator Operator [95.54 h]; Dumper Operator [95.54 h]; Dumper Truck [50 h]; Grader [61 h]; Grader Operator [95.54 h]; Loader [40 h]; Loader Operator [95.54 h]; Un-Skilled Labor [95.54 h]; Supervisor [95.54 h]; Skilled Labor [95.54 h] | 82,090.04 |  |  |
| SDR-2-CON-RW-ZA-2600 |  | Embankments to the Plot 2 Layer | 21d | 2026-06-15 A | 2026-06-25 A | SDR-2-CON-RW-ZA-3350 | 100% |  | 2026-12-08 | 2026-12-31 |  |  | SIC- Cost; Excavator [9.2 h]; Excavator Operator [14.45 h]; Dumper Operator [57.79 h]; Dumper Truck [60 h]; Grader [60 h]; Grader Operator [57.79 h]; Loader [22.29 h]; Loader Operator [22.15 h]; Un-Skilled Labor [38.53 h]; Supervisor [9.63 h]; Skilled Labor [38.53 h] | 39,546.33 |  |  |
|  | 2 | **Base Course** |  | 2026-08-31 | 2026-10-05 |  |  |  |  |  |  |  |  |  |  |  |
| SDR-2-CON-RW-ZA-2610 |  | Aggregate base course layer | 11d | 2026-08-31 A | 2026-10-05 A | SDR-2-CON-RW-ZA-2580 | 100% |  | 2026-10-20 | 2026-11-01 |  |  | SIC- Cost [120756]; Dumper Operator [76.43 h]; Dumper Truck [80 h]; Grader [80 h]; Grader Operator [76.43 h]; Loader [40 h]; Loader Operator [76.43 h]; Un-Skilled Labor [76.43 h]; Supervisor [76.43 h]; Skilled Labor [76.43 h]; Water Tanker [40 h]; Water Tanker Operator [76.43 h] | 120,755.7 | BAS |  |
|  | 8 | **Demolition Work** |  | 2026-10-06 | 2026-10-12 |  |  |  |  |  |  |  |  |  |  |  |
| SDR-2-CON-RW-ZA-2620 |  | Milling of wearing course | 2d | 2026-10-06 A | 2026-10-12 A | SDR-2-CON-RW-ZA-2610 | 100% |  | 2026-10-19 | 2026-10-20 |  |  | SIC- Cost [28300.2]; Un-Skilled Labor [57.32 h]; Supervisor [57.32 h]; Skilled Labor [57.32 h]; Water Tanker [20 h]; Water Tanker Operator [57.32 h]; Road Milling Machine [308 h]; Road Milling Machine Operator [60 h]; Sweeper Machine [30 h]; Sweeper Machine Operator [57.32 h] | 29,076.6 |  |  |
|  | 3 | **Asphalt Works** |  | 2026-10-13 | 2026-11-12 |  |  |  |  |  |  |  |  |  |  |  |
| SDR-2-CON-RW-ZA-2630 |  | Asphalt works 1st Layer with MC-01 | 12d | 2026-10-13 A | 2026-10-19 A | SDR-2-CON-RW-ZA-2620 | 100% |  | 2026-10-19 | 2026-11-01 |  |  | SIC- Cost [503392]; Dumper Operator [66.88 h]; Dumper Truck [50 h]; Supervisor [66.88 h]; Sweeper Machine [115.71 h]; Sweeper Machine Operator [66.88 h]; Pneumatic Tire Roller [147 h]; Pneumatic Roller Operator [66.88 h]; Asphalt Paver [23.3 h]; Asphalt Paver Operator [66.88 h] | 503,392.37 | ASP |  |
| SDR-2-CON-RW-ZA-2640 |  | Asphalt works 2nd layer with RC-02 | 11d | 2026-10-20 A | 2026-11-12 | SDR-2-CON-RW-ZA-2630, SDR-2-CON-RW-ZA-2450 | 30% | 11d | 2026-11-01 | 2026-11-12 | 27d | 7d | SIC- Cost [299797]; Dumper Operator [66.88 h]; Dumper Truck [50 h]; Supervisor [66.88 h]; Sweeper Machine [50 h]; Sweeper Machine Operator [66.88 h]; Pneumatic Tire Roller [56.43 h]; Pneumatic Roller Operator [66.88 h]; Asphalt Paver [20 h]; Asphalt Paver Operator [66.88 h] | 299,796.96 |  |  |
|  | 4 | **Kerbstone Installation** |  | 2026-10-25 | 2026-12-15 |  |  |  |  |  |  |  |  |  |  |  |
| SDR-2-CON-RW-ZA-3510 |  | Kerbstone Installation "all Types" Part 1 | 18d | 2026-10-25 A | 2026-11-21 | SDR-2-CON-RW-ZA-2580 | 25% | 18d | 2026-11-01 | 2026-11-21 | 20d | 0d | SIC- Cost; Un-Skilled Labor [38.53 h]; Supervisor [10.06 h]; Skilled Labor [38.53 h] | 32,835.82 |  |  |
| SDR-2-CON-RW-ZA-2650 |  | Kerbstone Installation "all Types" Part 2 | 21d | 2026-11-22 | 2026-12-15 | SDR-2-CON-RW-ZA-3310, SDR-2-CON-RW-ZA-2640, SDR-2-CON-RW-ZA-3510 |  |  |  |  | 20d | 0d | SIC- Cost; Un-Skilled Labor [38.53 h]; Supervisor [10.06 h]; Skilled Labor [38.53 h] | 254,068.7 |  |  |
|  | 5 | **Interlock Installation** |  | 2026-12-16 | 2027-01-09 |  |  |  |  |  |  |  |  |  |  |  |
| SDR-2-CON-RW-ZA-2660 |  | Interlock Installation | 21d | 2026-12-16 | 2027-01-09 | SDR-2-CON-RW-ZA-2460, SDR-2-CON-RW-ZA-2650 |  |  |  |  | 20d | 0d | SIC- Cost [149309]; Un-Skilled Labor [60.34 h]; Supervisor [10.06 h]; Skilled Labor [60.34 h] | 149,308.57 |  |  |
|  | 6 | **Road Marking** |  | 2027-01-10 | 2027-02-15 |  |  |  |  |  |  |  |  |  |  |  |
| SDR-2-CON-RW-ZA-2670 |  | Retroreflective Thermoplastic White Traffic lines | 17d | 2027-01-10 | 2027-01-28 | SDR-2-CON-RW-ZA-2660 |  |  |  |  | 20d | 0d | SIC- Cost [12688.5]; Un-Skilled Labor [38.21 h]; Supervisor [10.06 h]; Skilled Labor [38.21 h] | 12,688.52 |  |  |
| SDR-2-CON-RW-ZA-2680 |  | Retroreflective Thermoplastic Yellow, Traffic lines | 15d | 2027-01-30 | 2027-02-15 | SDR-2-CON-RW-ZA-2670 |  |  |  |  | 20d | 0d | SIC- Cost [9772.06]; Un-Skilled Labor [38.21 h]; Supervisor [38.21 h]; Skilled Labor [38.21 h] | 9,772.06 |  |  |
|  | 7 | **Traffic Signage** |  | 2027-02-16 | 2027-03-07 |  |  |  |  |  |  |  |  |  |  |  |
| SDR-2-CON-RW-ZA-2690 |  | Single post-Traffic signs Installation | 16d | 2027-02-16 | 2027-03-07 | SDR-2-CON-RW-ZA-2680 |  |  |  |  | 20d | 9d | SIC- Cost [5283.72]; Un-Skilled Labor [23.88 h]; Supervisor [23.88 h]; Skilled Labor [23.88 h] | 5,283.73 |  |  |
|  | 12 | **ROAD WORKS IN ( PH2-ART-MC10 )** |  | 2026-04-22 | 2027-03-22 |  |  |  |  |  |  |  |  |  |  |  |
|  | 1 | **Earth Works Road** |  | 2026-04-22 | 2026-05-13 |  |  |  |  |  |  |  |  |  |  |  |
| SDR-2-CON-RW-ZA-2700 |  | Roadway Excavation and cuttings | 20d | 2026-04-22 A | 2026-05-13 A | SDR-2-CON-RW-ZA-2560 SS | 100% |  | 2026-06-03 | 2026-06-25 |  |  | SIC- Cost [1563524]; Excavator [20 h]; Excavator Operator [82.84 h]; Dumper Operator [143.3 h]; Dumper Truck [150 h]; Grader [50 h]; Grader Operator [143.3 h]; Loader [82 h]; Loader Operator [143.3 h]; Un-Skilled Labor [10.03 h]; Supervisor [10.03 h]; Skilled Labor [10.03 h] | 23,081.48 | CUT | Z A |

| ID | WBS | Activity | Duration | Start | Finish | Predecessors | Complete | Remaining | Planned start | Planned finish | Total float | Free float | Resources | Cost | ROAD WORK | ZONE A |
| --- | --- | --- | --- | --- | --- | --- | --- | --- | --- | --- | --- | --- | --- | --- | --- | --- |
|  | 10 | **Backfilling Works** |  | 2026-05-02 | 2026-06-21 |  |  |  |  |  |  |  |  |  |  |  |
| SDR-2-CON-RW-ZA-3360 |  | Embankments to the Road 1 Layer | 21d | 2026-05-02 A | 2026-05-13 A | SDR-2-CON-RW-ZA-2700 | 100% |  | 2026-06-27 | 2026-07-20 |  |  | SIC- Cost; Excavator [62.71 h]; Excavator Operator [95.54 h]; Dumper Operator [95.54 h]; Dumper Truck [100 h]; Grader [100 h]; Grader Operator [95.54 h]; Loader [86.67 h]; Loader Operator [95.54 h]; Un-Skilled Labor [80.09 h]; Supervisor [95.54 h]; Skilled Labor [95.54 h] | 109,446.69 | BF | Z A |
| SDR-2-CON-RW-ZA-3370 |  | Embankments to the Road 2 Layer | 21d | 2026-05-07 A | 2026-05-18 A | SDR-2-CON-RW-ZA-3360 | 100% |  | 2026-07-21 | 2026-08-13 |  |  | SIC- Cost; Excavator [62.71 h]; Excavator Operator [95.54 h]; Dumper Operator [95.54 h]; Dumper Truck [100 h]; Grader [100 h]; Grader Operator [95.54 h]; Loader [62.86 h]; Loader Operator [95.54 h]; Un-Skilled Labor [57.79 h]; Supervisor [38.53 h]; Skilled Labor [57.79 h] | 125,081.93 | BF | Z A |
| SDR-2-CON-RW-ZA-3380 |  | Embankments to the Road 3 Layer | 21d | 2026-05-16 A | 2026-05-24 A | SDR-2-CON-RW-ZA-3370 | 100% |  | 2026-08-15 | 2026-09-07 |  |  | SIC- Cost; Excavator [62.71 h]; Excavator Operator [95.54 h]; Dumper Operator [95.54 h]; Dumper Truck [100 h]; Grader [100 h]; Grader Operator [95.54 h]; Loader [40 h]; Loader Operator [95.54 h]; Un-Skilled Labor [95.54 h]; Supervisor [95.54 h]; Skilled Labor [95.54 h] | 453,422 | BF | Z A |
| SDR-2-CON-RW-ZA-2710 |  | Embankments to the Road 4 Layer | 21d | 2026-06-11 A | 2026-06-21 A | SDR-2-CON-RW-ZA-3380 FS+1d | 100% |  | 2026-09-09 | 2026-10-04 |  |  | SIC- Cost; Excavator [62.71 h]; Excavator Operator [95.54 h]; Dumper Operator [95.54 h]; Dumper Truck [100 h]; Grader [60 h]; Grader Operator [95.54 h]; Loader [20 h]; Loader Operator [95.54 h]; Un-Skilled Labor [95.54 h]; Supervisor [95.54 h]; Skilled Labor [95.54 h] | 875,573.51 | BF | Z A |
|  | 11 | **Subgrade** |  | 2026-09-24 | 2026-10-12 |  |  |  |  |  |  |  |  |  |  |  |
| SDR-2-CON-RW-ZA-2720 |  | Subgrade layer works | 12d | 2026-09-24 A | 2026-10-12 A | SDR-2-CON-RW-ZA-2710 | 100% |  | 2026-09-28 | 2026-10-11 |  |  | SIC- Cost [1025846]; Excavator [13.82 h]; Excavator Operator [67.9 h]; Dumper Operator [67.9 h]; Dumper Truck [50 h]; Grader [20 h]; Grader Operator [67.9 h]; Loader [50 h]; Loader Operator [67.9 h]; Un-Skilled Labor [67.9 h]; Supervisor [67.9 h]; Skilled Labor [67.9 h]; Water Tanker [50 h]; Water Tanker Operator [67.9 h] | 1,025,845.67 | SUB | Z A |
|  | 9 | **Earth Works Plot** |  | 2026-06-09 | 2026-06-29 |  |  |  |  |  |  |  |  |  |  |  |
| SDR-2-CON-RW-ZA-2730 |  | Plot Excavation for cuttings (all types of soil) | 21d | 2026-06-09 A | 2026-06-18 A | SDR-2-CON-RW-ZA-2700 | 100% |  | 2026-10-19 | 2026-11-11 |  |  | SIC- Cost [82090]; Excavator [6 h]; Excavator Operator [67.9 h]; Dumper Operator [95.54 h]; Dumper Truck [50 h]; Grader [50 h]; Grader Operator [67.9 h]; Loader [20 h]; Loader Operator [67.9 h]; Un-Skilled Labor [67.9 h]; Supervisor [67.9 h]; Skilled Labor [67.9 h] | 82,090.04 |  | Z A |
| SDR-2-CON-RW-ZA-3390 |  | Embankments to the Plot 1 Layer | 21d | 2026-06-15 A | 2026-06-23 A | SDR-2-CON-RW-ZA-2730, SDR-2-CON-RW-ZA-2590 | 100% |  | 2026-11-14 | 2026-12-07 |  |  | SIC- Cost; Excavator [14.36 h]; Excavator Operator [67.9 h]; Dumper Operator [67.9 h]; Dumper Truck [50 h]; Grader [50 h]; Grader Operator [67.9 h]; Loader [41.9 h]; Loader Operator [95.54 h]; Un-Skilled Labor [95.54 h]; Supervisor [95.54 h]; Skilled Labor [95.54 h] | 39,546.33 |  | Z A |
| SDR-2-CON-RW-ZA-2740 |  | Embankments to the Plot 2 Layer | 21d | 2026-06-18 A | 2026-06-29 A | SDR-2-CON-RW-ZA-3390 | 100% |  | 2026-12-08 | 2026-12-31 |  |  | SIC- Cost; Excavator [11.06 h]; Excavator Operator [14.45 h]; Dumper Operator [48.16 h]; Dumper Truck [50 h]; Grader [50 h]; Grader Operator [48.16 h]; Loader [22.67 h]; Loader Operator [22.15 h]; Un-Skilled Labor [38.53 h]; Supervisor [9.63 h]; Skilled Labor [38.53 h] | 39,546.33 |  | Z A |
|  | 2 | **Base Course** |  | 2026-10-15 | 2026-10-25 |  |  |  |  |  |  |  |  |  |  |  |
| SDR-2-CON-RW-ZA-2750 |  | Aggregate base course layer | 11d | 2026-10-15 A | 2026-10-25 A | SDR-2-CON-RW-ZA-2720 | 100% |  | 2026-10-19 | 2026-10-31 |  |  | SIC- Cost [120756]; Dumper Operator [85.98 h]; Dumper Truck [50 h]; Grader [20 h]; Grader Operator [85.98 h]; Loader [20 h]; Loader Operator [85.98 h]; Un-Skilled Labor [85.98 h]; Supervisor [85.98 h]; Skilled Labor [85.98 h]; Water Tanker [20 h]; Water Tanker Operator [85.98 h] | 120,755.7 | BAS | Z A |
|  | 8 | **Demolition Work** |  | 2026-10-26 | 2026-11-02 |  |  |  |  |  |  |  |  |  |  |  |
| SDR-2-CON-RW-ZA-2760 |  | Milling of wearing course | 2d | 2026-10-26 A | 2026-11-02 | SDR-2-CON-RW-ZA-2750 | 50% | 2d | 2026-11-01 | 2026-11-02 | 54d | 0d | SIC- Cost [28300.2]; Un-Skilled Labor [57.32 h]; Supervisor [57.32 h]; Skilled Labor [57.32 h]; Water Tanker [20 h]; Water Tanker Operator [57.32 h]; Road Milling Machine [276 h]; Road Milling Machine Operator [50 h]; Sweeper Machine [30 h]; Sweeper Machine Operator [57.32 h] | 29,076.6 |  | Z A |
|  | 3 | **Asphalt Works** |  | 2026-10-24 | 2026-12-24 |  |  |  |  |  |  |  |  |  |  |  |
| SDR-2-CON-RW-ZA-2770 |  | Asphalt works 1st Layer with MC-01 | 10d | 2026-10-24 A | 2026-11-14 | SDR-2-CON-RW-ZA-2750, SDR-2-CON-RW-ZA-2760 | 85% | 10d | 2026-10-28 | 2026-11-08 | 54d | 0d | SIC- Cost; Dumper Operator [44.58 h]; Dumper Truck [46.66 h]; Supervisor [44.58 h]; Sweeper Machine [46.66 h]; Sweeper Machine Operator [44.58 h]; Pneumatic Tire Roller [46.66 h]; Pneumatic Roller Operator [44.58 h]; Asphalt Paver [20 h]; Asphalt Paver Operator [44.58 h] | 321,275.73 | ASP | Z A |
| SDR-2-CON-RW-ZA-2780 |  | Asphalt works 2nd layer with RC-02 | 14d | 2026-11-15 | 2026-11-30 | SDR-2-CON-RW-ZA-2770 |  |  |  |  | 54d | 0d | SIC- Cost; Dumper Operator [30.17 h]; Dumper Truck [46.66 h]; Supervisor [9.63 h]; Sweeper Machine [46.66 h]; Sweeper Machine Operator [44.59 h]; Pneumatic Tire Roller [46.66 h]; Pneumatic Roller Operator [30.17 h]; Asphalt Paver [20 h]; Asphalt Paver Operator [24.14 h] | 321,275.73 |  | Z A |
| SDR-2-CON-RW-ZA-2850 |  | Asphalt Works 3 rd Layer with RC-02 | 21d | 2026-12-01 | 2026-12-24 | SDR-2-CON-RW-ZA-2780 |  |  |  |  | 54d | 0d | SIC- Cost; Dump Truck [46.66 h]; Dum Truck Operator [30.17 h]; Supervisor [10.06 h]; Sweeper Machine [46.66 h]; Sweeper Machine Operator [30.17 h]; Pneumatic Tire Roller [46.66 h]; Pneumatic Roller Operator [44.58 h]; Asphalt Paver [22 h]; Asphalt Paver Operator [22.13 h] | 160,637.87 |  | Z A |
|  | 4 | **Kerbstone Installation** |  | 2026-11-01 | 2027-01-18 |  |  |  |  |  |  |  |  |  |  |  |
| SDR-2-CON-RW-ZA-3520 |  | Kerbstone Installation "all Types" Part 1 | 18d | 2026-11-01 | 2026-11-21 | SDR-2-CON-RW-ZA-2720 |  |  |  |  | 65d | 0d | SIC- Cost [286905]; Un-Skilled Labor [50.28 h]; Supervisor [10.06 h]; Skilled Labor [50.28 h] | 32,835.82 |  | Z A |
| SDR-2-CON-RW-ZA-2790 |  | Kerbstone Installation "all Types" Part 2 | 21d | 2026-12-26 | 2027-01-18 | SDR-2-CON-RW-ZA-2040 FS+2d, SDR-2-CON-RW-ZA-2850, SDR-2-CON-RW-ZA-2850 FF |  |  |  |  | 54d | 0d | SIC- Cost [286905]; Un-Skilled Labor [50.28 h]; Supervisor [10.06 h]; Skilled Labor [50.28 h] | 254,068.7 |  | Z A |
|  | 5 | **Interlock Installation** |  | 2027-01-19 | 2027-02-11 |  |  |  |  |  |  |  |  |  |  |  |
| SDR-2-CON-RW-ZA-2800 |  | Interlock Installation | 21d | 2027-01-19 | 2027-02-11 | SDR-2-CON-RW-ZA-2790 |  |  |  |  | 54d | 0d | SIC- Cost; Un-Skilled Labor [28.9 h]; Supervisor [10.06 h]; Skilled Labor [28.9 h] | 149,308.57 |  | Z A |

| ID | WBS | Activity | Duration | Start | Finish | Predecessors | Complete | Planned start | Planned finish | Total float | Free float | Resources | Cost | ZONE A | ROAD WORK |
| --- | --- | --- | --- | --- | --- | --- | --- | --- | --- | --- | --- | --- | --- | --- | --- |
|  | 6 | **Road Marking** |  | 2027-02-13 | 2027-03-03 |  |  |  |  |  |  |  |  |  |  |
| SDR-2-CON-RW-ZA-2810 |  | Retroreflective Thermoplastic White Traffic lines | 8d | 2027-02-13 | 2027-02-21 | SDR-2-CON-RW-ZA-2800 |  |  |  | 54d | 0d | SIC- Cost [12688.5]; Un-Skilled Labor [19.11 h]; Supervisor [19.11 h]; Skilled Labor [19.11 h] | 12,688.52 | Z A |  |
| SDR-2-CON-RW-ZA-2820 |  | Retroreflective Thermoplastic Yellow, Traffic lines | 8d | 2027-02-23 | 2027-03-03 | SDR-2-CON-RW-ZA-2810 |  |  |  | 54d | 0d | SIC- Cost [9772.06]; Un-Skilled Labor [19.11 h]; Supervisor [19.11 h]; Skilled Labor [19.11 h] | 9,772.06 | Z A |  |
|  | 7 | **Traffic Signage** |  | 2027-03-04 | 2027-03-22 |  |  |  |  |  |  |  |  |  |  |
| SDR-2-CON-RW-ZA-2830 |  | Single post-Traffic signs Installation | 12d | 2027-03-04 | 2027-03-22 | SDR-2-CON-RW-ZA-2820, SDR-2-CON-RW-ZA-2740 |  |  |  | 54d | 53d | SIC- Cost [5283.72]; Un-Skilled Labor [19.11 h]; Supervisor [19.11 h]; Skilled Labor [19.11 h] | 5,283.73 | Z A |  |
|  | ZG | **ZONE G** |  | 2026-02-06 | 2027-04-27 |  |  |  |  |  |  |  |  |  |  |
|  | 14 | **GENERAL WORKS** |  | 2026-02-06 | 2026-03-16 |  |  |  |  |  |  |  |  |  |  |
|  | 10 | **Cleaning and removal of organic materials in Zone A** |  | 2026-02-06 | 2026-03-06 |  |  |  |  |  |  |  |  |  |  |
| SDR-2-CON-RW-ZG-1000 |  | Cleaning and removal of organic materials in Zone G | 17d | 2026-02-06 A | 2026-03-06 A | SDR-2-MOBL-1060 | 100% | 2026-02-07 | 2026-02-25 |  |  | SIC- Cost [15]; Surveyor [114.64 h]; Helper [114.64 h]; Loader [260 h]; Loader Operator [248.39 h]; Grader Operator [477.68 h]; Grader [890 h] | 537,313.43 |  |  |
|  | 12 | **Surveying works Zone A** |  | 2026-03-06 | 2026-03-16 |  |  |  |  |  |  |  |  |  |  |
| SDR-2-CON-RW-ZG-1010 |  | Surveying works Zone G | 16d | 2026-03-06 A | 2026-03-16 A | SDR-2-CON-RW-ZG-1000 | 100% | 2026-02-26 | 2026-03-16 |  |  | SIC- Cost [9]; Surveyor [68.79 h]; Helper [68.79 h]; Grader [389.5 h] | 102,954.52 |  |  |
|  | 5 | **ROAD WORKS IN ( PH2-COL-MC50 )** |  | 2026-03-28 | 2027-04-27 |  |  |  |  |  |  |  |  |  |  |
|  | 1 | **Earth Works Road** |  | 2026-04-04 | 2026-04-27 |  |  |  |  |  |  |  |  |  |  |
| SDR-2-CON-RW-ZG-1020 |  | Roadway Excavation and cuttings | 21d | 2026-04-04 A | 2026-04-27 A | SDR-2-CON-RW-ZG-1010 | 100% | 2026-03-17 | 2026-04-14 |  |  | SIC- Cost [1563524]; Excavator [260 h]; Excavator Operator [143.3 h]; Dumper Operator [143.3 h]; Dumper Truck [650 h]; Grader [150 h]; Grader Operator [143.3 h]; Loader [150 h]; Loader Operator [143.3 h]; Un-Skilled Labor [143.3 h]; Supervisor [143.3 h]; Skilled Labor [143.3 h] | 23,081.48 |  | CUT |
|  | 10 | **Backfilling Works** |  | 2026-03-28 | 2026-07-15 |  |  |  |  |  |  |  |  |  |  |
| SDR-2-CON-RW-ZG-2220 |  | Embankments to the Road 1 Layer | 21d | 2026-03-28 A | 2026-05-21 A | SDR-2-CON-RW-ZG-1020 | 100% | 2026-04-15 | 2026-05-09 |  |  | SIC- Cost; Excavator [83.67 h]; Excavator Operator [95.54 h]; Dumper Operator [95.54 h]; Dumper Truck [100 h]; Grader [100 h]; Grader Operator [95.54 h]; Loader [72.86 h]; Loader Operator [95.54 h]; Un-Skilled Labor [95.54 h]; Supervisor [95.54 h]; Skilled Labor [95.54 h] | 115,529.69 |  | BF |
| SDR-2-CON-RW-ZG-2230 |  | Embankments to the Road 2 Layer | 21d | 2026-05-23 A | 2026-06-03 A | SDR-2-CON-RW-ZG-2220 | 100% | 2026-05-10 | 2026-06-07 |  |  | SIC- Cost; Excavator [83.67 h]; Excavator Operator [95.54 h]; Dumper Operator [95.54 h]; Dumper Truck [100 h]; Grader [100 h]; Grader Operator [95.54 h]; Loader [48.1 h]; Loader Operator [95.54 h]; Un-Skilled Labor [28.23 h]; Supervisor [28.23 h]; Skilled Labor [95.54 h] | 173,294.54 |  | BF |
| SDR-2-CON-RW-ZG-2240 |  | Embankments to the Road 3 Layer | 21d | 2026-06-04 A | 2026-07-01 A | SDR-2-CON-RW-ZG-2230 | 100% | 2026-06-08 | 2026-07-01 |  |  | SIC- Cost; Excavator [83.67 h]; Excavator Operator [95.54 h]; Dumper Operator [95.54 h]; Dumper Truck [100 h]; Grader [100 h]; Grader Operator [95.54 h]; Loader [40 h]; Loader Operator [95.54 h]; Un-Skilled Labor [57.79 h]; Supervisor [28.9 h]; Skilled Labor [57.79 h] | 433,236.34 |  | BF |
| SDR-2-CON-RW-ZG-1030 |  | Embankments to the Road 4 Layer | 21d | 2026-07-02 A | 2026-07-15 A | SDR-2-CON-RW-ZG-2240 FS+6d | 100% | 2026-07-09 | 2026-08-02 |  |  | SIC- Cost; Excavator [83.67 h]; Excavator Operator [95.54 h]; Dumper Operator [95.54 h]; Dumper Truck [338.1 h]; Grader [60 h]; Grader Operator [95.54 h]; Loader [40 h]; Loader Operator [95.54 h]; Un-Skilled Labor [57.79 h]; Supervisor [38.53 h]; Skilled Labor [57.79 h] | 722,060.57 |  | BF |
|  | 11 | **Subgrade** |  | 2026-07-16 | 2026-10-01 |  |  |  |  |  |  |  |  |  |  |
| SDR-2-CON-RW-ZG-1040 |  | Subgrade layer works | 21d | 2026-07-16 A | 2026-10-01 A | SDR-2-CON-RW-ZG-1030 | 100% | 2026-08-03 | 2026-08-26 |  |  | SIC- Cost [1025846]; Excavator [10.31 h]; Excavator Operator [152.86 h]; Dumper Operator [152.86 h]; Dumper Truck [350 h]; Grader [110 h]; Grader Operator [152.86 h]; Loader [43 h]; Loader Operator [152.86 h]; Un-Skilled Labor [152.86 h]; Supervisor [152.86 h]; Skilled Labor [152.86 h]; Water Tanker [63 h]; Water Tanker Operator [152.86 h] | 331,815.82 |  | SUB |
|  | 9 | **Earth Works Plot** |  | 2026-06-23 | 2026-10-19 |  |  |  |  |  |  |  |  |  |  |
| SDR-2-CON-RW-ZG-1050 |  | Plot Excavation for cuttings (all types of soil) | 21d | 2026-06-23 A | 2026-10-12 A | SDR-2-CON-RW-ZG-1020, SDR-2-CON-RW-ZG-1040 FF | 100% | 2026-08-27 | 2026-09-20 |  |  | SIC- Cost [82090]; Excavator [12 h]; Excavator Operator [54.77 h]; Dumper Operator [143.3 h]; Dumper Truck [340 h]; Grader [77 h]; Grader Operator [143.3 h]; Loader [99.33 h]; Loader Operator [143.3 h]; Un-Skilled Labor [143.3 h]; Supervisor [143.3 h]; Skilled Labor [143.3 h] | 380,597.51 |  |  |
| SDR-2-CON-RW-ZG-2250 |  | Embankments to the Plot 1 Layer | 21d | 2026-07-21 A | 2026-08-03 A | SDR-2-CON-RW-ZG-1050 SS | 100% | 2026-09-21 | 2026-10-15 |  |  | SIC- Cost; Excavator [14 h]; Excavator Operator [95.54 h]; Dumper Operator [95.54 h]; Dumper Truck [118 h]; Grader [60 h]; Grader Operator [95.54 h]; Loader [20 h]; Loader Operator [95.54 h]; Un-Skilled Labor [95.54 h]; Supervisor [95.54 h]; Skilled Labor [95.54 h] | 176,936.15 |  |  |
| SDR-2-CON-RW-ZG-2260 |  | Embankments to the Plot 2 Layer | 21d | 2026-07-21 A | 2026-10-14 A | SDR-2-CON-RW-ZG-2250, SDR-2-CON-RW-ZA-3520 FF | 100% | 2026-11-09 | 2026-12-02 |  |  | SIC- Cost; Excavator [14 h]; Excavator Operator [95.54 h]; Dumper Operator [95.54 h]; Dumper Truck [118 h]; Grader [82.24 h]; Grader Operator [95.54 h]; Loader [42.24 h]; Loader Operator [95.54 h]; Un-Skilled Labor [95.54 h]; Supervisor [95.54 h]; Skilled Labor [95.54 h] | 27,682.42 |  |  |
| SDR-2-CON-RW-ZG-1060 |  | Embankments to the Plot 3 Layer | 21d | 2026-08-01 A | 2026-10-19 A | SDR-2-CON-RW-ZG-2260 FF | 100% | 2026-12-03 | 2026-12-27 |  |  | SIC- Cost; Excavator [14 h]; Excavator Operator [134.85 h]; Dumper Operator [95.54 h]; Dumper Truck [118 h]; Grader [120 h]; Grader Operator [95.54 h]; Loader [436.02 h]; Loader Operator [95.54 h]; Un-Skilled Labor [38.53 h]; Supervisor [9.63 h]; Skilled Labor [38.53 h] | 23,727.79 |  |  |

| ID | WBS | Activity | Duration | Start | Finish | Predecessors | Complete | Remaining | Planned start | Planned finish | Total float | Free float | Resources | Cost | ROAD WORK | ZONE G |
| --- | --- | --- | --- | --- | --- | --- | --- | --- | --- | --- | --- | --- | --- | --- | --- | --- |
|  | 2 | **Base Course** |  | 2026-08-20 | 2026-10-05 |  |  |  |  |  |  |  |  |  |  |  |
| SDR-2-CON-RW-ZG-1070 |  | Aggregate base course layer | 21d | 2026-08-20 A | 2026-10-05 A | SDR-2-CON-RW-ZG-1040 FF | 100% |  | 2026-08-27 | 2026-09-20 |  |  | SIC- Cost [120756]; Dumper Operator [67.9 h]; Dumper Truck [370 h]; Grader [50 h]; Grader Operator [67.9 h]; Loader [125.91 h]; Loader Operator [67.9 h]; Un-Skilled Labor [67.9 h]; Supervisor [67.9 h]; Skilled Labor [67.9 h]; Water Tanker [150 h]; Water Tanker Operator [67.9 h] | 120,755.7 | BAS |  |
|  | 8 | **Demolition Work** |  | 2026-10-19 | 2026-11-10 |  |  |  |  |  |  |  |  |  |  |  |
| SDR-2-CON-RW-ZG-1080 |  | Removal of curbstone | 11d | 2026-10-19 A | 2026-10-25 A | SDR-2-CON-RW-ZG-1070 | 100% |  | 2026-11-01 | 2026-11-12 |  |  | SIC- Cost [776]; Un-Skilled Labor [76.43 h]; Supervisor [76.43 h]; Skilled Labor [76.43 h] | 776 |  |  |
| SDR-2-CON-RW-ZG-1090 |  | Milling of wearing course | 9d | 2026-10-26 A | 2026-11-10 | SDR-2-CON-RW-ZG-1080 | 25% | 9d | 2026-11-01 | 2026-11-10 | 13d | 9d | SIC- Cost; Un-Skilled Labor [66.88 h]; Supervisor [9.63 h]; Skilled Labor [28.9 h]; Water Tanker [20 h]; Water Tanker Operator [66.88 h]; Road Milling Machine [50 h]; Road Milling Machine Operator [50 h]; Sweeper Machine [50 h]; Sweeper Machine Operator [48.16 h] | 28,300.16 |  |  |
|  | 3 | **Asphalt Works** |  | 2026-10-05 | 2027-01-06 |  |  |  |  |  |  |  |  |  |  |  |
| SDR-2-CON-RW-ZG-1100 |  | Asphalt works 1st Layer with MC-01 | 19d | 2026-10-05 A | 2026-12-13 | SDR-2-CON-RW-ZG-2550, SDR-2-CON-RW-ZG-1070, SDR-2-CON-RW-ZG-1090 | 25% | 19d | 2026-10-28 | 2026-11-18 | 4d | 0d | SIC- Cost [503392]; Dumper Operator [76.43 h]; Dumper Truck [231.25 h]; Supervisor [76.43 h]; Sweeper Machine [111.25 h]; Sweeper Machine Operator [76.43 h]; Pneumatic Tire Roller [146.87 h]; Pneumatic Roller Operator [76.43 h]; Asphalt Paver [110 h]; Asphalt Paver Operator [76.43 h] | 503,392.37 | ASP |  |
| SDR-2-CON-RW-ZG-1110 |  | Asphalt works 2nd layer with RC-02 | 21d | 2026-12-14 | 2027-01-06 | SDR-2-CON-RW-ZG-1100 |  |  |  |  | 4d | 0d | SIC- Cost; Dumper Operator [60.34 h]; Dumper Truck [50 h]; Supervisor [10.06 h]; Sweeper Machine [50 h]; Sweeper Machine Operator [50.28 h]; Pneumatic Tire Roller [50 h]; Pneumatic Roller Operator [76.43 h]; Asphalt Paver [40 h]; Asphalt Paver Operator [40.23 h] | 299,796.96 |  |  |
|  | 4 | **Kerbstone Installation** |  | 2026-11-01 | 2027-01-31 |  |  |  |  |  |  |  |  |  |  |  |
| SDR-2-CON-RW-ZG-2550 |  | Kerbstone Installation "all Types" Part 1 | 18d | 2026-11-01 | 2026-11-21 | SDR-2-CON-RW-ZG-1070 |  |  |  |  | 4d | 0d | SIC- Cost [286905]; Un-Skilled Labor [50.28 h]; Supervisor [10.06 h]; Skilled Labor [50.28 h] | 32,835.82 |  |  |
| SDR-2-CON-RW-ZG-1120 |  | Kerbstone Installation "all Types" Part 2 | 21d | 2027-01-07 | 2027-01-31 | SDR-2-CON-RW-ZA-3350, SDR-2-CON-RW-ZG-1110 |  |  |  |  | 4d | 0d | SIC- Cost [286905]; Un-Skilled Labor [50.28 h]; Supervisor [10.06 h]; Skilled Labor [50.28 h] | 254,068.7 |  |  |
|  | 5 | **Interlock Installation** |  | 2027-02-01 | 2027-02-25 |  |  |  |  |  |  |  |  |  |  |  |
| SDR-2-CON-RW-ZG-1130 |  | Interlock Installation | 21d | 2027-02-01 | 2027-02-25 | SDR-2-CON-RW-ZA-2600, SDR-2-CON-RW-ZG-1120 |  |  |  |  | 4d | 0d | SIC- Cost [149309]; Un-Skilled Labor [50.28 h]; Supervisor [10.06 h]; Skilled Labor [50.28 h] | 149,303.43 |  |  |
|  | 6 | **Road Marking** |  | 2027-02-27 | 2027-04-04 |  |  |  |  |  |  |  |  |  |  |  |
| SDR-2-CON-RW-ZG-1140 |  | Retroreflective Thermoplastic White Traffic lines | 14d | 2027-02-27 | 2027-03-18 | SDR-2-CON-RW-ZG-1130 |  |  |  |  | 4d | 0d | SIC- Cost [12688.5]; Un-Skilled Labor [19.11 h]; Supervisor [19.11 h]; Skilled Labor [19.11 h] | 12,688.52 |  |  |
| SDR-2-CON-RW-ZG-1150 |  | Retroreflective Thermoplastic Yellow, Traffic lines | 14d | 2027-03-20 | 2027-04-04 | SDR-2-CON-RW-ZG-1140 |  |  |  |  | 4d | 0d | SIC- Cost [9772.06]; Un-Skilled Labor [19.11 h]; Supervisor [19.11 h]; Skilled Labor [19.11 h] | 9,772.06 |  |  |
|  | 7 | **Traffic Signage** |  | 2027-04-05 | 2027-04-27 |  |  |  |  |  |  |  |  |  |  |  |
| SDR-2-CON-RW-ZG-1160 |  | Single post-Traffic signs Installation | 20d | 2027-04-05 | 2027-04-27 | SDR-2-CON-RW-ZG-1150, SDR-2-CON-RW-ZG-1060 |  |  |  |  | 4d | 0d | SIC- Cost [5283.72]; Un-Skilled Labor [19.11 h]; Supervisor [19.11 h]; Skilled Labor [19.11 h] | 5,283.73 |  |  |
|  | 1 | **ROAD WORKS IN ( PH2-G-MCA0 )** |  | 2026-03-30 | 2027-03-24 |  |  |  |  |  |  |  |  |  |  |  |
|  | 1 | **Earth Works Road** |  | 2026-03-30 | 2026-05-03 |  |  |  |  |  |  |  |  |  |  |  |
| SDR-2-CON-RW-ZG-1320 |  | Roadway Excavation and cuttings | 20d | 2026-03-30 A | 2026-05-03 A | SDR-2-CON-RW-ZG-1170 SS+3d | 100% |  | 2026-03-29 | 2026-04-20 |  |  | SIC- Cost [1563524]; Excavator [30 h]; Excavator Operator [143.3 h]; Dumper Operator [143.3 h]; Dumper Truck [150 h]; Grader [30 h]; Grader Operator [143.3 h]; Loader [156.57 h]; Loader Operator [143.3 h]; Un-Skilled Labor [143.3 h]; Supervisor [143.3 h]; Skilled Labor [143.3 h] | 23,081.48 | CUT | Z G |
|  | 10 | **Backfilling Works** |  | 2026-03-30 | 2026-06-13 |  |  |  |  |  |  |  |  |  |  |  |
| SDR-2-CON-RW-ZG-2310 |  | Embankments to the Road 1 Layer | 21d | 2026-03-30 A | 2026-04-30 A | SDR-2-CON-RW-ZG-1320 | 100% |  | 2026-04-21 | 2026-05-14 |  |  | SIC- Cost; Excavator [20 h]; Excavator Operator [95.54 h]; Dumper Operator [95.54 h]; Dumper Truck [100 h]; Grader [20 h]; Grader Operator [95.54 h]; Loader [100 h]; Loader Operator [95.54 h]; Un-Skilled Labor [95.54 h]; Supervisor [95.54 h]; Skilled Labor [95.54 h] | 125,081.93 | BF | Z G |
| SDR-2-CON-RW-ZG-2320 |  | Embankments to the Road 2 Layer | 21d | 2026-05-02 A | 2026-05-18 A | SDR-2-CON-RW-ZG-2310 | 100% |  | 2026-05-16 | 2026-06-13 |  |  | SIC- Cost; Excavator [20 h]; Excavator Operator [95.54 h]; Dumper Operator [95.54 h]; Dumper Truck [100 h]; Grader [20 h]; Grader Operator [95.54 h]; Loader [100 h]; Loader Operator [95.54 h]; Un-Skilled Labor [10.03 h]; Supervisor [10.03 h]; Skilled Labor [10.03 h] | 187,622.9 | BF | Z G |
| SDR-2-CON-RW-ZG-2330 |  | Embankments to the Road 3 Layer | 21d | 2026-05-19 A | 2026-06-01 A | SDR-2-CON-RW-ZG-2320 FS+5d | 100% |  | 2026-06-20 | 2026-07-13 |  |  | SIC- Cost; Excavator [20 h]; Excavator Operator [95.54 h]; Dumper Operator [95.54 h]; Dumper Truck [100 h]; Grader [20 h]; Grader Operator [95.54 h]; Loader [100 h]; Loader Operator [95.54 h]; Un-Skilled Labor [57.79 h]; Supervisor [38.53 h]; Skilled Labor [57.79 h] | 469,057.24 | BF | Z G |
| SDR-2-CON-RW-ZG-1330 |  | Embankments to the Road 4 Layer | 21d | 2026-06-02 A | 2026-06-13 A | SDR-2-CON-RW-ZG-2330 FS+6d, SDR-2-PRO-DEL-E-1010 | 100% |  | 2026-08-08 | 2026-08-31 |  |  | SIC- Cost; Excavator [20 h]; Excavator Operator [95.54 h]; Dumper Operator [95.54 h]; Dumper Truck [100 h]; Grader [20 h]; Grader Operator [95.54 h]; Loader [78.57 h]; Loader Operator [95.54 h]; Un-Skilled Labor [95.54 h]; Supervisor [95.54 h]; Skilled Labor [95.54 h] | 781,762.06 | BF | Z G |

| ID | WBS | Activity | Duration | Start | Finish | Predecessors | Complete | Remaining | Planned start | Planned finish | Total float | Free float | Resources | Cost | ROAD WORK | ZONE G |
| --- | --- | --- | --- | --- | --- | --- | --- | --- | --- | --- | --- | --- | --- | --- | --- | --- |
|  | 11 | **Subgrade** |  | 2026-08-20 | 2026-08-31 |  |  |  |  |  |  |  |  |  |  |  |
| SDR-2-CON-RW-ZG-1340 |  | Subgrade layer works | 21d | 2026-08-20 A | 2026-08-31 A | SDR-2-CON-RW-ZG-1330 FS+5d | 100% |  | 2026-09-07 | 2026-10-01 |  |  | SIC- Cost; Excavator [6 h]; Excavator Operator [67.9 h]; Dumper Operator [67.9 h]; Dumper Truck [50 h]; Grader [15 h]; Grader Operator [67.9 h]; Loader [20 h]; Loader Operator [19.26 h]; Un-Skilled Labor [67.9 h]; Supervisor [67.9 h]; Skilled Labor [67.9 h]; Water Tanker [40 h]; Water Tanker Operator [38.53 h] | 1,025,845.67 | SUB | Z G |
|  | 9 | **Earth Works Plot** |  | 2026-05-11 | 2026-06-15 |  |  |  |  |  |  |  |  |  |  |  |
| SDR-2-CON-RW-ZG-1350 |  | Plot Excavation for cuttings (all types of soil) | 21d | 2026-05-11 A | 2026-05-23 A | SDR-2-CON-RW-ZG-1320, SDR-2-CON-RW-ZG-1340 | 100% |  | 2026-10-03 | 2026-10-26 |  |  | SIC- Cost [82090]; Excavator [7 h]; Excavator Operator [67.9 h]; Dumper Operator [67.9 h]; Dumper Truck [50 h]; Grader [50 h]; Grader Operator [67.9 h]; Loader [21 h]; Loader Operator [67.9 h]; Un-Skilled Labor [67.9 h]; Supervisor [67.9 h]; Skilled Labor [67.9 h] | 82,090.04 |  | Z G |
| SDR-2-CON-RW-ZG-2340 |  | Embankments to the Plot 1 Layer | 21d | 2026-05-23 A | 2026-06-04 A | SDR-2-CON-RW-ZG-1350 | 100% |  | 2026-10-27 | 2026-11-19 |  |  | SIC- Cost; Excavator [15 h]; Excavator Operator [95.54 h]; Dumper Operator [67.9 h]; Dumper Truck [50 h]; Grader [20 h]; Grader Operator [67.9 h]; Loader [20.86 h]; Loader Operator [67.9 h]; Un-Skilled Labor [67.9 h]; Supervisor [67.9 h]; Skilled Labor [67.9 h] | 39,546.33 |  | Z G |
| SDR-2-CON-RW-ZG-1360 |  | Embankments to the Plot 2 Layer | 21d | 2026-06-06 A | 2026-06-15 A | SDR-2-CON-RW-ZG-2340, SDR-2-CON-RW-ZG-2300 | 100% |  | 2026-11-21 | 2026-12-14 |  |  | SIC- Cost; Excavator [15 h]; Excavator Operator [95.54 h]; Dumper Operator [67.9 h]; Dumper Truck [50 h]; Grader [20 h]; Grader Operator [67.9 h]; Loader [24.86 h]; Loader Operator [67.9 h]; Un-Skilled Labor [28.9 h]; Supervisor [9.63 h]; Skilled Labor [28.9 h] | 39,546.33 |  | Z G |
|  | 2 | **Base Course** |  | 2026-08-22 | 2026-09-26 |  |  |  |  |  |  |  |  |  |  |  |
| SDR-2-CON-RW-ZG-1370 |  | Aggregate base course layer | 21d | 2026-08-22 A | 2026-09-26 A | SDR-2-CON-RW-ZG-1340 | 100% |  | 2026-10-03 | 2026-10-26 |  |  | SIC- Cost [120756]; Dumper Operator [67.9 h]; Dumper Truck [50 h]; Grader [50 h]; Grader Operator [67.9 h]; Loader [20.94 h]; Loader Operator [67.9 h]; Un-Skilled Labor [67.9 h]; Supervisor [67.9 h]; Skilled Labor [67.9 h]; Water Tanker [20.94 h]; Water Tanker Operator [67.9 h] | 120,755.7 | BAS | Z G |
|  | 8 | **Demolition Work** |  | 2026-11-01 | 2026-11-18 |  |  |  |  |  |  |  |  |  |  |  |
| SDR-2-CON-RW-ZG-1380 |  | Removal of curbstone | 9d | 2026-11-01 | 2026-11-10 | SDR-2-CON-RW-ZG-1370 |  |  |  |  | 28d | 0d | SIC- Cost [776]; Un-Skilled Labor [76.43 h]; Supervisor [76.43 h]; Skilled Labor [76.43 h] | 776 |  | Z G |
| SDR-2-CON-RW-ZG-1390 |  | Milling of wearing course | 7d | 2026-11-11 | 2026-11-18 | SDR-2-CON-RW-ZG-1380 |  |  |  |  | 28d | 0d | SIC- Cost [28300.2]; Un-Skilled Labor [66.88 h]; Supervisor [10.06 h]; Skilled Labor [66.88 h]; Water Tanker [70 h]; Water Tanker Operator [66.88 h]; Road Milling Machine [70 h]; Road Milling Machine Operator [70 h]; Sweeper Machine [70 h]; Sweeper Machine Operator [66.88 h] | 28,300.16 |  | Z G |
|  | 3 | **Asphalt Works** |  | 2026-10-05 | 2026-12-05 |  |  |  |  |  |  |  |  |  |  |  |
| SDR-2-CON-RW-ZG-1400 |  | Asphalt works 1st Layer with MC-01 | 12d | 2026-10-05 A | 2026-11-14 | SDR-2-CON-RW-ZG-1370 | 50% | 12d | 2026-10-05 | 2026-10-18 | 41d | 0d | SIC- Cost [503392]; Dumper Operator [76.43 h]; Dumper Truck [80 h]; Supervisor [76.43 h]; Sweeper Machine [95.38 h]; Sweeper Machine Operator [76.43 h]; Pneumatic Tire Roller [285.55 h]; Pneumatic Roller Operator [76.43 h]; Asphalt Paver [80 h]; Asphalt Paver Operator [76.43 h] | 503,392.37 | ASP | Z G |
| SDR-2-CON-RW-ZG-1410 |  | Asphalt works 2nd layer with RC-02 | 18d | 2026-11-15 | 2026-12-05 | SDR-2-CON-RW-ZG-1400 |  |  |  |  | 41d | 0d | SIC- Cost [299797]; Dumper Operator [76.43 h]; Dumper Truck [50 h]; Supervisor [10.06 h]; Sweeper Machine [40 h]; Sweeper Machine Operator [60.34 h]; Pneumatic Tire Roller [57.33 h]; Pneumatic Roller Operator [76.43 h]; Asphalt Paver [20 h]; Asphalt Paver Operator [42.24 h] | 299,796.96 |  | Z G |
|  | 4 | **Kerbstone Installation** |  | 2026-11-22 | 2026-12-29 |  |  |  |  |  |  |  |  |  |  |  |
| SDR-2-CON-RW-ZG-2570 |  | Kerbstone Installation "all Types" Part 1 | 18d | 2026-11-22 | 2026-12-12 | SDR-2-CON-RW-ZG-1340, SDR-2-CON-RW-ZG-2560 |  |  |  |  | 14d | 0d | SIC- Cost [286905]; Un-Skilled Labor [28.9 h]; Supervisor [10.06 h]; Skilled Labor [28.9 h] | 32,835.82 |  | Z G |
| SDR-2-CON-RW-ZG-1420 |  | Kerbstone Installation "all Types" Part 2 | 21d | 2026-12-06 | 2026-12-29 | SDR-2-CON-RW-ZG-1390, SDR-2-CON-RW-ZG-1410 |  |  |  |  | 41d | 0d | SIC- Cost [286905]; Un-Skilled Labor [28.9 h]; Supervisor [10.06 h]; Skilled Labor [28.9 h] | 254,068.7 |  | Z G |
|  | 5 | **Interlock Installation** |  | 2026-12-30 | 2027-01-21 |  |  |  |  |  |  |  |  |  |  |  |
| SDR-2-CON-RW-ZG-1430 |  | Interlock Installation | 20d | 2026-12-30 | 2027-01-21 | SDR-2-CON-RW-ZG-1420 |  |  |  |  | 41d | 0d | SIC- Cost [149309]; Un-Skilled Labor [28.9 h]; Supervisor [10.06 h]; Skilled Labor [28.9 h] | 149,308.57 |  | Z G |
|  | 6 | **Road Marking** |  | 2027-01-23 | 2027-02-24 |  |  |  |  |  |  |  |  |  |  |  |
| SDR-2-CON-RW-ZG-1440 |  | Retroreflective Thermoplastic White Traffic lines | 14d | 2027-01-23 | 2027-02-07 | SDR-2-CON-RW-ZG-1430 |  |  |  |  | 41d | 0d | SIC- Cost [12688.5]; Un-Skilled Labor [19.11 h]; Supervisor [19.11 h]; Skilled Labor [19.11 h] | 12,688.52 |  | Z G |
| SDR-2-CON-RW-ZG-1450 |  | Retroreflective Thermoplastic Yellow, Traffic lines | 14d | 2027-02-08 | 2027-02-24 | SDR-2-CON-RW-ZG-1440, SDR-2-CON-RW-ZG-1360 SS |  |  |  |  | 41d | 0d | SIC- Cost [9772.06]; Un-Skilled Labor [19.11 h]; Supervisor [19.11 h]; Skilled Labor [19.11 h] | 9,772.06 |  | Z G |
|  | 7 | **Traffic Signage** |  | 2027-02-25 | 2027-03-24 |  |  |  |  |  |  |  |  |  |  |  |
| SDR-2-CON-RW-ZG-1460 |  | Single post-Traffic signs Installation | 20d | 2027-02-25 | 2027-03-24 | SDR-2-CON-RW-ZG-1360, SDR-2-CON-RW-ZG-1450 |  |  |  |  | 41d | 27d | SIC- Cost [5283.72]; Un-Skilled Labor [19.11 h]; Supervisor [19.11 h]; Skilled Labor [19.11 h] | 5,283.73 |  | Z G |

| ID | WBS | Activity | Duration | Start | Finish | Predecessors | Complete | Remaining | Planned start | Planned finish | Total float | Free float | Resources | Cost | ROAD WORK |
| --- | --- | --- | --- | --- | --- | --- | --- | --- | --- | --- | --- | --- | --- | --- | --- |
|  | 6 | **ROAD WORKS IN ( PH2-ART-MC00 )** |  | 2026-03-26 | 2027-04-04 |  |  |  |  |  |  |  |  |  |  |
|  | 1 | **Earth Works Road** |  | 2026-03-26 | 2026-05-29 |  |  |  |  |  |  |  |  |  |  |
| SDR-2-CON-RW-ZG-1170 |  | Roadway Excavation and cuttings | 20d | 2026-03-26 A | 2026-05-29 A | SDR-2-CON-RW-ZG-1020 SS+3d | 100% |  | 2026-03-25 | 2026-04-16 |  |  | SIC- Cost [1563524]; Excavator [20 h]; Excavator Operator [143.3 h]; Dumper Operator [143.3 h]; Dumper Truck [150 h]; Grader [40 h]; Grader Operator [143.3 h]; Loader [103 h]; Loader Operator [143.3 h]; Un-Skilled Labor [143.3 h]; Supervisor [143.3 h]; Skilled Labor [143.3 h] | 23,081.48 | CUT |
|  | 10 | **Backfilling Works** |  | 2026-03-28 | 2026-06-30 |  |  |  |  |  |  |  |  |  |  |
| SDR-2-CON-RW-ZG-2270 |  | Embankments to the Road 1 Layer | 21d | 2026-03-28 A | 2026-06-09 A | SDR-2-CON-RW-ZG-1170 | 100% |  | 2026-04-18 | 2026-05-11 |  |  | SIC- Cost; Excavator [85.11 h]; Excavator Operator [95.54 h]; Dumper Operator [95.54 h]; Dumper Truck [100 h]; Grader [100 h]; Grader Operator [95.54 h]; Loader [87.14 h]; Loader Operator [95.54 h]; Un-Skilled Labor [95.54 h]; Supervisor [95.54 h]; Skilled Labor [95.54 h] | 125,081.93 | BF |
| SDR-2-CON-RW-ZG-2280 |  | Embankments to the Road 2 Layer | 21d | 2026-05-25 A | 2026-06-22 A | SDR-2-CON-RW-ZG-2270 | 100% |  | 2026-05-12 | 2026-06-09 |  |  | SIC- Cost; Excavator [85.11 h]; Excavator Operator [95.54 h]; Dumper Operator [95.54 h]; Dumper Truck [100 h]; Grader [100 h]; Grader Operator [95.54 h]; Loader [100 h]; Loader Operator [95.54 h]; Un-Skilled Labor [19.13 h]; Supervisor [19.13 h]; Skilled Labor [19.13 h] | 187,622.9 | BF |
| SDR-2-CON-RW-ZG-1180 |  | Embankments to the Road 4 Layer | 21d | 2026-06-09 A | 2026-06-30 A | SDR-2-CON-RW-ZG-2290 | 100% |  | 2026-07-05 | 2026-07-28 |  |  | SIC- Cost; Excavator [85.11 h]; Excavator Operator [95.54 h]; Dumper Operator [95.54 h]; Dumper Truck [100 h]; Grader [100 h]; Grader Operator [95.54 h]; Loader [67.14 h]; Loader Operator [95.54 h]; Un-Skilled Labor [95.54 h]; Supervisor [95.54 h]; Skilled Labor [95.54 h] | 781,762.06 | BF |
| SDR-2-CON-RW-ZG-2290 |  | Embankments to the Road 3 Layer | 21d | 2026-06-17 A | 2026-06-25 A | SDR-2-CON-RW-ZG-2280 | 100% |  | 2026-06-10 | 2026-07-04 |  |  | SIC- Cost; Excavator [85.11 h]; Excavator Operator [95.54 h]; Dumper Operator [95.54 h]; Dumper Truck [100 h]; Grader [100 h]; Grader Operator [95.54 h]; Loader [40 h]; Loader Operator [95.54 h]; Un-Skilled Labor [57.79 h]; Supervisor [38.53 h]; Skilled Labor [57.79 h] | 469,057.24 | BF |
|  | 11 | **Subgrade** |  | 2026-08-10 | 2026-08-24 |  |  |  |  |  |  |  |  |  |  |
| SDR-2-CON-RW-ZG-1190 |  | Subgrade layer works | 21d | 2026-08-10 A | 2026-08-24 A | SDR-2-CON-RW-ZG-1180 | 100% |  | 2026-07-29 | 2026-08-22 |  |  | SIC- Cost; Excavator [6 h]; Excavator Operator [5.78 h]; Dumper Operator [57.79 h]; Dumper Truck [60 h]; Grader [25 h]; Grader Operator [24.08 h]; Loader [20 h]; Loader Operator [19.26 h]; Un-Skilled Labor [38.53 h]; Supervisor [9.63 h]; Skilled Labor [38.53 h]; Water Tanker [40 h]; Water Tanker Operator [38.53 h] | 428,830.75 | SUB |
|  | 9 | **Earth Works Plot** |  | 2026-07-01 | 2026-07-30 |  |  |  |  |  |  |  |  |  |  |
| SDR-2-CON-RW-ZG-1200 |  | Plot Excavation for cuttings (all types of soil) | 21d | 2026-07-01 A | 2026-07-20 A | SDR-2-CON-RW-ZG-1170, SDR-2-CON-RW-ZG-1190 | 100% |  | 2026-08-23 | 2026-09-15 |  |  | SIC- Cost [82090]; Excavator [12 h]; Excavator Operator [67.9 h]; Dumper Operator [67.9 h]; Dumper Truck [50 h]; Grader [50 h]; Grader Operator [67.9 h]; Loader [50 h]; Loader Operator [67.9 h]; Un-Skilled Labor [67.9 h]; Supervisor [67.9 h]; Skilled Labor [67.9 h] | 380,597.51 |  |
| SDR-2-CON-RW-ZG-2300 |  | Embankments to the Plot 1 Layer | 21d | 2026-07-11 A | 2026-07-21 A | SDR-2-CON-RW-ZG-1200 FS+4d, SDR-2-CON-RW-ZG-1050 SS | 100% |  | 2026-10-03 | 2026-10-26 |  |  | SIC- Cost; Excavator [0.3 h]; Excavator Operator [67.9 h]; Dumper Operator [67.9 h]; Dumper Truck [50 h]; Grader [30 h]; Grader Operator [67.9 h]; Loader [50 h]; Loader Operator [95.54 h]; Un-Skilled Labor [95.54 h]; Supervisor [95.54 h]; Skilled Labor [95.54 h] | 338,053.79 |  |
| SDR-2-CON-RW-ZG-1210 |  | Embankments to the Plot 2 Layer | 21d | 2026-07-20 A | 2026-07-30 A | SDR-2-CON-RW-ZG-2300 | 100% |  | 2026-10-27 | 2026-11-19 |  |  | SIC- Cost; Excavator [0.3 h]; Excavator Operator [67.9 h]; Dumper Operator [67.9 h]; Dumper Truck [50 h]; Grader [30 h]; Grader Operator [67.9 h]; Loader [24.05 h]; Loader Operator [95.54 h]; Un-Skilled Labor [38.53 h]; Supervisor [9.63 h]; Skilled Labor [38.53 h] | 39,546.33 |  |
|  | 2 | **Base Course** |  | 2026-08-20 | 2026-10-05 |  |  |  |  |  |  |  |  |  |  |
| SDR-2-CON-RW-ZG-1220 |  | Aggregate base course layer | 21d | 2026-08-20 A | 2026-10-05 A | SDR-2-CON-RW-ZG-1190 | 100% |  | 2026-08-23 | 2026-09-15 |  |  | SIC- Cost [120756]; Dumper Operator [67.9 h]; Dumper Truck [50 h]; Grader [50 h]; Grader Operator [67.9 h]; Loader [50 h]; Loader Operator [67.9 h]; Un-Skilled Labor [67.9 h]; Supervisor [67.9 h]; Skilled Labor [67.9 h]; Water Tanker [50 h]; Water Tanker Operator [67.9 h] | 120,755.7 | BAS |
|  | 8 | **Demolition Work** |  | 2026-10-05 | 2026-10-18 |  |  |  |  |  |  |  |  |  |  |
| SDR-2-CON-RW-ZG-1230 |  | Removal of curbstone | 8d | 2026-10-05 A | 2026-10-15 A | SDR-2-CON-RW-ZG-1220 | 100% |  | 2026-10-19 | 2026-10-27 |  |  | SIC- Cost [776]; Un-Skilled Labor [76.43 h]; Supervisor [76.43 h]; Skilled Labor [76.43 h] | 776 |  |
| SDR-2-CON-RW-ZG-1240 |  | Milling of wearing course | 13d | 2026-10-13 A | 2026-10-18 A | SDR-2-CON-RW-ZG-1230 | 100% |  | 2026-10-19 | 2026-11-02 |  |  | SIC- Cost [28300.2]; Un-Skilled Labor [66.88 h]; Supervisor [66.88 h]; Skilled Labor [66.88 h]; Water Tanker [20 h]; Water Tanker Operator [66.88 h]; Road Milling Machine [30 h]; Road Milling Machine Operator [70 h]; Sweeper Machine [40 h]; Sweeper Machine Operator [66.88 h] | 28,300.16 |  |
|  | 3 | **Asphalt Works** |  | 2026-10-05 | 2026-12-15 |  |  |  |  |  |  |  |  |  |  |
| SDR-2-CON-RW-ZG-1250 |  | Asphalt works 1st Layer with MC-01 | 21d | 2026-10-05 A | 2026-10-19 A | SDR-2-CON-RW-ZG-1220, SDR-2-CON-RW-ZG-1240 | 100% |  | 2026-10-29 | 2026-11-22 |  |  | SIC- Cost [503392]; Dumper Operator [76.43 h]; Dumper Truck [80 h]; Supervisor [76.43 h]; Sweeper Machine [80 h]; Sweeper Machine Operator [76.43 h]; Pneumatic Tire Roller [80 h]; Pneumatic Roller Operator [76.43 h]; Asphalt Paver [46.5 h]; Asphalt Paver Operator [76.43 h] | 503,392.37 | ASP |
| SDR-2-CON-RW-ZG-1260 |  | Asphalt works 2nd layer with RC-02 | 21d | 2026-11-22 | 2026-12-15 | SDR-2-CON-RW-ZG-2550, SDR-2-CON-RW-ZG-1250 |  |  |  |  | 43d | 0d | SIC- Cost [299797]; Dumper Operator [60.34 h]; Dumper Truck [50 h]; Supervisor [10.06 h]; Sweeper Machine [40 h]; Sweeper Machine Operator [76.43 h]; Pneumatic Tire Roller [40 h]; Pneumatic Roller Operator [76.43 h]; Asphalt Paver [25 h]; Asphalt Paver Operator [25.14 h] | 299,796.96 |  |
|  | 4 | **Kerbstone Installation** |  | 2026-10-26 | 2027-01-07 |  |  |  |  |  |  |  |  |  |  |
| SDR-2-CON-RW-ZG-2560 |  | Kerbstone Installation "all Types" Part 1 | 18d | 2026-10-26 A | 2026-11-21 | SDR-2-CON-RW-ZG-1190 | 50% | 18d | 2026-11-01 | 2026-11-21 | 14d | 0d | SIC- Cost [286905]; Un-Skilled Labor [66.88 h]; Supervisor [10.06 h]; Skilled Labor [66.88 h] | 32,835.82 |  |
| SDR-2-CON-RW-ZG-1270 |  | Kerbstone Installation "all Types" Part 2 | 20d | 2026-12-16 | 2027-01-07 | SDR-2-CON-RW-ZG-1260 |  |  |  |  | 43d | 0d | SIC- Cost [286905]; Un-Skilled Labor [66.88 h]; Supervisor [10.06 h]; Skilled Labor [66.88 h] | 254,068.7 |  |

| ID | WBS | Activity | Duration | Start | Finish | Predecessors | Complete | Planned start | Planned finish | Total float | Free float | Resources | Cost | ROAD WORK | ZONE G |
| --- | --- | --- | --- | --- | --- | --- | --- | --- | --- | --- | --- | --- | --- | --- | --- |
|  | 5 | **Interlock Installation** |  | 2027-01-09 | 2027-02-01 |  |  |  |  |  |  |  |  |  |  |
| SDR-2-CON-RW-ZG-1280 |  | Interlock Installation | 21d | 2027-01-09 | 2027-02-01 | SDR-2-CON-RW-ZG-1270 |  |  |  | 43d | 0d | SIC- Cost [149309]; Un-Skilled Labor [28.9 h]; Supervisor [9.63 h]; Skilled Labor [28.9 h] | 149,308.57 |  |  |
|  | 6 | **Road Marking** |  | 2027-02-02 | 2027-03-07 |  |  |  |  |  |  |  |  |  |  |
| SDR-2-CON-RW-ZG-1290 |  | Retroreflective Thermoplastic White Traffic lines | 14d | 2027-02-02 | 2027-02-17 | SDR-2-CON-RW-ZG-1280 |  |  |  | 43d | 0d | SIC- Cost [12688.5]; Un-Skilled Labor [19.11 h]; Supervisor [19.11 h]; Skilled Labor [19.11 h] | 12,688.52 |  |  |
| SDR-2-CON-RW-ZG-1300 |  | Retroreflective Thermoplastic Yellow, Traffic lines | 14d | 2027-02-18 | 2027-03-07 | SDR-2-CON-RW-ZG-1290 |  |  |  | 43d | 0d | SIC- Cost [9772.06]; Un-Skilled Labor [19.11 h]; Supervisor [19.11 h]; Skilled Labor [19.11 h] | 9,772.06 |  |  |
|  | 7 | **Traffic Signage** |  | 2027-03-08 | 2027-04-04 |  |  |  |  |  |  |  |  |  |  |
| SDR-2-CON-RW-ZG-1310 |  | Single post-Traffic signs Installation | 20d | 2027-03-08 | 2027-04-04 | SDR-2-CON-RW-ZG-1300, SDR-2-CON-RW-ZG-1210 |  |  |  | 43d | 0d | SIC- Cost [5283.72]; Un-Skilled Labor [19.11 h]; Supervisor [19.11 h]; Skilled Labor [19.11 h] | 5,283.73 |  |  |
|  | 8 | **ROAD WORKS IN ( PH2-G-MCE0 )** |  | 2026-03-15 | 2027-04-25 |  |  |  |  |  |  |  |  |  |  |
|  | 1 | **Earth Works Road** |  | 2026-04-14 | 2026-04-30 |  |  |  |  |  |  |  |  |  |  |
| SDR-2-CON-RW-ZG-1470 |  | Roadway Excavation and cuttings | 21d | 2026-04-14 A | 2026-04-30 A | SDR-2-CON-RW-ZG-1320 SS+3d | 100% | 2026-04-01 | 2026-04-25 |  |  | SIC- Cost [1563524]; Excavator [10 h]; Excavator Operator [143.3 h]; Dumper Operator [143.3 h]; Dumper Truck [150 h]; Grader [20 h]; Grader Operator [143.3 h]; Loader [167.14 h]; Loader Operator [143.3 h]; Un-Skilled Labor [143.3 h]; Supervisor [143.3 h]; Skilled Labor [143.3 h] | 23,081.48 | CUT | Z G |
|  | 10 | **Backfilling Works** |  | 2026-03-15 | 2026-05-13 |  |  |  |  |  |  |  |  |  |  |
| SDR-2-CON-RW-ZG-2350 |  | Embankments to the Road 1 Layer | 21d | 2026-03-15 A | 2026-04-01 A | SDR-2-CON-RW-ZG-1470 | 100% | 2026-04-26 | 2026-05-19 |  |  | SIC- Cost; Excavator [85.11 h]; Excavator Operator [95.54 h]; Dumper Operator [95.54 h]; Dumper Truck [100 h]; Grader [100 h]; Grader Operator [95.54 h]; Loader [100 h]; Loader Operator [95.54 h]; Un-Skilled Labor [95.54 h]; Supervisor [82.82 h]; Skilled Labor [95.54 h] | 125,081.93 | BF | Z G |
| SDR-2-CON-RW-ZG-2360 |  | Embankments to the Road 2 Layer | 21d | 2026-04-02 A | 2026-04-07 A | SDR-2-CON-RW-ZG-2350 | 100% | 2026-05-20 | 2026-06-17 |  |  | SIC- Cost; Excavator [85.11 h]; Excavator Operator [95.54 h]; Dumper Operator [95.54 h]; Dumper Truck [100 h]; Grader [100 h]; Grader Operator [95.54 h]; Loader [100 h]; Loader Operator [95.54 h]; Un-Skilled Labor [10.03 h]; Supervisor [10.03 h]; Skilled Labor [10.03 h] | 187,622.9 | BF | Z G |
| SDR-2-CON-RW-ZG-2370 |  | Embankments to the Road 3 Layer | 21d | 2026-04-08 A | 2026-04-15 A | SDR-2-CON-RW-ZG-2360 | 100% | 2026-06-18 | 2026-07-12 |  |  | SIC- Cost; Excavator [85.11 h]; Excavator Operator [95.54 h]; Dumper Operator [95.54 h]; Dumper Truck [100 h]; Grader [100 h]; Grader Operator [95.54 h]; Loader [100 h]; Loader Operator [95.54 h]; Un-Skilled Labor [95.54 h]; Supervisor [95.54 h]; Skilled Labor [95.54 h] | 469,057.24 | BF | Z G |
| SDR-2-CON-RW-ZG-1480 |  | Embankments to the Road 4 Layer | 21d | 2026-04-14 A | 2026-05-13 A | SDR-2-CON-RW-ZG-2370 FS+6d, SDR-2-PRO-DEL-E-1010 | 100% | 2026-07-25 | 2026-08-17 |  |  | SIC- Cost; Excavator [85.11 h]; Excavator Operator [95.54 h]; Dumper Operator [95.54 h]; Dumper Truck [100 h]; Grader [100 h]; Grader Operator [95.54 h]; Loader [71.9 h]; Loader Operator [95.54 h]; Un-Skilled Labor [95.54 h]; Supervisor [95.54 h]; Skilled Labor [95.54 h] | 781,762.06 | BF | Z G |
|  | 11 | **Subgrade** |  | 2026-08-24 | 2026-09-14 |  |  |  |  |  |  |  |  |  |  |
| SDR-2-CON-RW-ZG-1490 |  | Subgrade layer works | 21d | 2026-08-24 A | 2026-09-14 A | SDR-2-CON-RW-ZG-1480 FS+6d | 100% | 2026-08-25 | 2026-09-17 |  |  | SIC- Cost; Excavator [6 h]; Excavator Operator [5.78 h]; Dumper Operator [48.16 h]; Dumper Truck [50 h]; Grader [15 h]; Grader Operator [67.9 h]; Loader [20 h]; Loader Operator [19.26 h]; Un-Skilled Labor [38.53 h]; Supervisor [9.63 h]; Skilled Labor [38.53 h]; Water Tanker [50 h]; Water Tanker Operator [48.16 h] | 876,591.94 | SUB | Z G |
|  | 9 | **Earth Works Plot** |  | 2026-05-20 | 2026-07-20 |  |  |  |  |  |  |  |  |  |  |
| SDR-2-CON-RW-ZG-1500 |  | Plot Excavation for cuttings (all types of soil) | 21d | 2026-05-20 A | 2026-05-31 A | SDR-2-CON-RW-ZG-1470, SDR-2-CON-RW-ZG-1490 | 100% | 2026-09-19 | 2026-10-13 |  |  | SIC- Cost [82090]; Excavator [15 h]; Excavator Operator [67.9 h]; Dumper Operator [67.9 h]; Dumper Truck [50 h]; Grader [20 h]; Grader Operator [67.9 h]; Loader [50 h]; Loader Operator [67.9 h]; Un-Skilled Labor [67.9 h]; Supervisor [67.9 h]; Skilled Labor [67.9 h] | 82,090.04 |  | Z G |
| SDR-2-CON-RW-ZG-2380 |  | Embankments to the Plot 1 Layer | 21d | 2026-06-04 A | 2026-06-22 A | SDR-2-CON-RW-ZG-1500 | 100% | 2026-10-14 | 2026-11-07 |  |  | SIC- Cost; Excavator [15 h]; Excavator Operator [95.54 h]; Dumper Operator [67.9 h]; Dumper Truck [50 h]; Grader [15 h]; Grader Operator [67.9 h]; Loader [33.43 h]; Loader Operator [95.54 h]; Un-Skilled Labor [67.9 h]; Supervisor [67.9 h]; Skilled Labor [67.9 h] | 39,546.33 |  | Z G |
| SDR-2-CON-RW-ZG-1510 |  | Embankments to the Plot 2 Layer | 21d | 2026-07-13 A | 2026-07-20 A | SDR-2-CON-RW-ZG-2380 FS+2d | 100% | 2026-11-10 | 2026-12-03 |  |  | SIC- Cost; Excavator [15 h]; Excavator Operator [95.54 h]; Dumper Operator [67.9 h]; Dumper Truck [50 h]; Grader [274.14 h]; Grader Operator [67.9 h]; Loader [60 h]; Loader Operator [95.54 h]; Un-Skilled Labor [28.9 h]; Supervisor [9.63 h]; Skilled Labor [28.9 h] | 39,546.33 |  | Z G |
|  | 2 | **Base Course** |  | 2026-09-14 | 2026-09-24 |  |  |  |  |  |  |  |  |  |  |
| SDR-2-CON-RW-ZG-1520 |  | Aggregate base course layer | 18d | 2026-09-14 A | 2026-09-24 A | SDR-2-CON-RW-ZG-1490 | 100% | 2026-09-19 | 2026-10-10 |  |  | SIC- Cost [120756]; Dumper Operator [67.9 h]; Dumper Truck [50 h]; Grader [40 h]; Grader Operator [67.9 h]; Loader [50 h]; Loader Operator [67.9 h]; Un-Skilled Labor [67.9 h]; Supervisor [67.9 h]; Skilled Labor [67.9 h]; Water Tanker [50 h]; Water Tanker Operator [67.9 h] | 120,755.7 | BAS | Z G |
|  | 8 | **Demolition Work** |  | 2026-11-01 | 2026-12-17 |  |  |  |  |  |  |  |  |  |  |
| SDR-2-CON-RW-ZG-1530 |  | Removal of curbstone | 4d | 2026-11-01 | 2026-11-04 | SDR-2-CON-RW-ZG-1520 |  |  |  | 46d | 32d | SIC- Cost [776]; Un-Skilled Labor [76.43 h]; Supervisor [76.43 h]; Skilled Labor [76.43 h] | 776 |  | Z G |
| SDR-2-CON-RW-ZG-1540 |  | Milling of wearing course | 5d | 2026-12-13 | 2026-12-17 | SDR-2-CON-RW-ZG-2570, SDR-2-CON-RW-ZG-1530 |  |  |  | 14d | 0d | SIC- Cost [28300.2]; Un-Skilled Labor [66.88 h]; Supervisor [66.88 h]; Skilled Labor [66.88 h]; Water Tanker [40 h]; Water Tanker Operator [66.88 h]; Road Milling Machine [30 h]; Road Milling Machine Operator [70 h]; Sweeper Machine [20 h]; Sweeper Machine Operator [66.88 h] | 28,300.16 |  | Z G |

| ID | WBS | Activity | Duration | Start | Finish | Predecessors | Complete | Planned start | Planned finish | Total float | Free float | Resources | Cost | ROAD WORK | ZONE G |
| --- | --- | --- | --- | --- | --- | --- | --- | --- | --- | --- | --- | --- | --- | --- | --- |
|  | 3 | **Asphalt Works** |  | 2026-09-26 | 2027-01-04 |  |  |  |  |  |  |  |  |  |  |
| SDR-2-CON-RW-ZG-1550 |  | Asphalt works 1st Layer with MC-01 | 12d | 2026-09-26 A | 2026-10-01 A | SDR-2-CON-RW-ZG-1520, SDR-2-CON-RW-ZG-1540 | 100% | 2026-11-15 | 2026-11-28 |  |  | SIC- Cost [503392]; Dumper Operator [66.88 h]; Dumper Truck [50 h]; Supervisor [66.88 h]; Sweeper Machine [70 h]; Sweeper Machine Operator [66.88 h]; Pneumatic Tire Roller [295.71 h]; Pneumatic Roller Operator [66.88 h]; Asphalt Paver [90 h]; Asphalt Paver Operator [66.88 h] | 503,392.37 | ASP | Z G |
| SDR-2-CON-RW-ZG-1560 |  | Asphalt works 2nd layer with RC-02 | 15d | 2026-12-19 | 2027-01-04 | SDR-2-CON-RW-ZG-1550 |  |  |  | 14d | 0d | SIC- Cost [299797]; Dumper Operator [66.88 h]; Dumper Truck [50 h]; Supervisor [10.06 h]; Sweeper Machine [50 h]; Sweeper Machine Operator [10.06 h]; Pneumatic Tire Roller [40 h]; Pneumatic Roller Operator [66.88 h]; Asphalt Paver [15 h]; Asphalt Paver Operator [66.88 h] | 299,796.96 |  | Z G |
|  | 4 | **Kerbstone Installation** |  | 2026-11-01 | 2027-01-28 |  |  |  |  |  |  |  |  |  |  |
| SDR-2-CON-RW-ZG-2580 |  | Kerbstone Installation "all Types" Part 1 | 18d | 2026-11-01 | 2026-11-21 | SDR-2-CON-RW-ZG-1490 |  |  |  | 39d | 0d | SIC- Cost [286905]; Un-Skilled Labor [66.88 h]; Supervisor [10.06 h]; Skilled Labor [66.88 h] | 32,835.82 |  | Z G |
| SDR-2-CON-RW-ZG-1570 |  | Kerbstone Installation "all Types" Part 2 | 21d | 2027-01-05 | 2027-01-28 | SDR-2-CON-RW-ZG-1560 |  |  |  | 14d | 0d | SIC- Cost [286905]; Un-Skilled Labor [66.88 h]; Supervisor [10.06 h]; Skilled Labor [66.88 h] | 254,068.7 |  | Z G |
|  | 5 | **Interlock Installation** |  | 2027-01-30 | 2027-02-23 |  |  |  |  |  |  |  |  |  |  |
| SDR-2-CON-RW-ZG-1580 |  | Interlock Installation | 21d | 2027-01-30 | 2027-02-23 | SDR-2-CON-RW-ZG-1570 |  |  |  | 14d | 0d | SIC- Cost [149309]; Un-Skilled Labor [66.88 h]; Supervisor [10.06 h]; Skilled Labor [66.88 h] | 149,308.57 |  | Z G |
|  | 6 | **Road Marking** |  | 2027-02-24 | 2027-04-01 |  |  |  |  |  |  |  |  |  |  |
| SDR-2-CON-RW-ZG-1590 |  | Retroreflective Thermoplastic White Traffic lines | 14d | 2027-02-24 | 2027-03-16 | SDR-2-CON-RW-ZG-1580 |  |  |  | 14d | 0d | SIC- Cost [12688.5]; Un-Skilled Labor [19.11 h]; Supervisor [19.11 h]; Skilled Labor [19.11 h] | 12,688.52 |  | Z G |
| SDR-2-CON-RW-ZG-1600 |  | Retroreflective Thermoplastic Yellow, Traffic lines | 14d | 2027-03-17 | 2027-04-01 | SDR-2-CON-RW-ZG-1590 |  |  |  | 14d | 0d | SIC- Cost [9772.06]; Un-Skilled Labor [19.11 h]; Supervisor [19.11 h]; Skilled Labor [19.11 h] | 9,772.06 |  | Z G |
|  | 7 | **Traffic Signage** |  | 2027-04-03 | 2027-04-25 |  |  |  |  |  |  |  |  |  |  |
| SDR-2-CON-RW-ZG-1610 |  | Single post-Traffic signs Installation | 20d | 2027-04-03 | 2027-04-25 | SDR-2-CON-RW-ZG-1600, SDR-2-CON-RW-ZG-1510 |  |  |  | 14d | 0d | SIC- Cost [5283.72]; Un-Skilled Labor [19.11 h]; Supervisor [19.11 h]; Skilled Labor [19.11 h] | 5,283.73 |  | Z G |
|  | 4 | **ROAD WORKS IN ( PH2-G-MCD0 )** |  | 2026-03-21 | 2027-04-10 |  |  |  |  |  |  |  |  |  |  |
|  | 1 | **Earth Works Road** |  | 2026-03-21 | 2026-04-14 |  |  |  |  |  |  |  |  |  |  |
| SDR-2-CON-RW-ZG-1620 |  | Roadway Excavation and cuttings | 20d | 2026-03-21 A | 2026-04-14 A | SDR-2-CON-RW-ZG-1470 SS+3d | 100% | 2026-04-05 | 2026-04-27 |  |  | SIC- Cost [1563524]; Excavator [20 h]; Excavator Operator [143.3 h]; Dumper Operator [143.3 h]; Dumper Truck [150 h]; Grader [30 h]; Grader Operator [143.3 h]; Loader [174 h]; Loader Operator [143.3 h]; Un-Skilled Labor [143.3 h]; Supervisor [143.3 h]; Skilled Labor [143.3 h] | 23,081.48 | CUT | Z G |
|  | 10 | **Backfilling Works** |  | 2026-03-29 | 2026-05-25 |  |  |  |  |  |  |  |  |  |  |
| SDR-2-CON-RW-ZG-2390 |  | Embankments to the Road 1 Layer | 21d | 2026-03-29 A | 2026-04-15 A | SDR-2-CON-RW-ZG-1620 | 100% | 2026-04-28 | 2026-05-21 |  |  | SIC- Cost; Excavator [10 h]; Excavator Operator [95.54 h]; Dumper Operator [95.54 h]; Dumper Truck [100 h]; Grader [100 h]; Grader Operator [95.54 h]; Loader [16 h]; Loader Operator [95.54 h]; Un-Skilled Labor [95.54 h]; Supervisor [73.72 h]; Skilled Labor [95.54 h] | 125,081.93 | BF | Z G |
| SDR-2-CON-RW-ZG-2400 |  | Embankments to the Road 2 Layer | 21d | 2026-04-15 A | 2026-05-13 A | SDR-2-CON-RW-ZG-2390 | 100% | 2026-05-23 | 2026-06-20 |  |  | SIC- Cost; Excavator [10 h]; Excavator Operator [95.54 h]; Dumper Operator [95.54 h]; Dumper Truck [100 h]; Grader [94.76 h]; Grader Operator [95.54 h]; Loader [16 h]; Loader Operator [95.54 h]; Un-Skilled Labor [19.13 h]; Supervisor [19.13 h]; Skilled Labor [19.13 h] | 187,622.9 | BF | Z G |
| SDR-2-CON-RW-ZG-2410 |  | Embankments to the Road 3 Layer | 21d | 2026-05-16 A | 2026-05-25 A | SDR-2-CON-RW-ZG-2400 | 100% | 2026-06-21 | 2026-07-14 |  |  | SIC- Cost; Excavator [10 h]; Excavator Operator [95.54 h]; Dumper Operator [95.54 h]; Dumper Truck [100 h]; Grader [100 h]; Grader Operator [95.54 h]; Loader [16 h]; Loader Operator [95.54 h]; Un-Skilled Labor [95.54 h]; Supervisor [95.54 h]; Skilled Labor [95.54 h] | 469,057.24 | BF | Z G |
| SDR-2-CON-RW-ZG-1630 |  | Embankments to the Road 4 Layer | 21d | 2026-05-24 A | 2026-05-24 A | SDR-2-CON-RW-ZG-2410 FS+6d | 100% | 2026-07-22 | 2026-08-15 |  |  | SIC- Cost; Excavator [10 h]; Excavator Operator [95.54 h]; Dumper Operator [95.54 h]; Dumper Truck [100 h]; Grader [100 h]; Grader Operator [95.54 h]; Loader [16 h]; Loader Operator [95.54 h]; Un-Skilled Labor [95.54 h]; Supervisor [95.54 h]; Skilled Labor [95.54 h] | 781,762.06 | BF | Z G |
|  | 11 | **Subgrade** |  | 2026-09-10 | 2026-09-30 |  |  |  |  |  |  |  |  |  |  |
| SDR-2-CON-RW-ZG-1640 |  | Subgrade layer works | 21d | 2026-09-10 A | 2026-09-30 A | SDR-2-CON-RW-ZG-1630 FS+4d | 100% | 2026-08-20 | 2026-09-13 |  |  | SIC- Cost; Excavator [6 h]; Excavator Operator [5.78 h]; Dumper Operator [57.79 h]; Dumper Truck [60 h]; Grader [10 h]; Grader Operator [114.64 h]; Loader [10 h]; Loader Operator [9.63 h]; Un-Skilled Labor [38.53 h]; Supervisor [9.63 h]; Skilled Labor [38.53 h]; Water Tanker [40 h]; Water Tanker Operator [38.53 h] | 876,591.94 | SUB | Z G |
|  | 9 | **Earth Works Plot** |  | 2026-05-18 | 2026-10-31 |  |  |  |  |  |  |  |  |  |  |
| SDR-2-CON-RW-ZG-1650 |  | Plot Excavation for cuttings (all types of soil) | 21d | 2026-05-18 A | 2026-10-25 A | SDR-2-CON-RW-ZG-1640 FF, SDR-2-CON-RW-ZG-1620 | 100% | 2026-09-14 | 2026-10-08 |  |  | SIC- Cost [82090]; Excavator [10 h]; Excavator Operator [67.9 h]; Dumper Operator [67.9 h]; Dumper Truck [50 h]; Grader [10 h]; Grader Operator [67.9 h]; Loader [10 h]; Loader Operator [67.9 h]; Un-Skilled Labor [124.2 h]; Supervisor [67.9 h]; Skilled Labor [67.9 h] | 82,090.04 |  | Z G |
| SDR-2-CON-RW-ZG-2420 |  | Embankments to the Plot 1 Layer | 21d | 2026-06-04 A | 2026-10-11 A | SDR-2-CON-RW-ZG-1650 FF, SDR-2-CON-RW-ZG-2580 FF | 100% | 2026-10-11 | 2026-11-03 |  |  | SIC- Cost; Excavator [10 h]; Excavator Operator [95.54 h]; Dumper Operator [95.54 h]; Dumper Truck [60 h]; Grader [20 h]; Grader Operator [95.54 h]; Loader [30.57 h]; Loader Operator [95.54 h]; Un-Skilled Labor [38.53 h]; Supervisor [9.63 h]; Skilled Labor [38.53 h] | 39,546.33 |  | Z G |
| SDR-2-CON-RW-ZG-1660 |  | Embankments to the Plot 2 Layer | 21d | 2026-07-07 A | 2026-10-31 A | SDR-2-CON-RW-ZG-2380, SDR-2-CON-RW-ZG-2420 FF | 100% | 2026-11-08 | 2026-12-01 |  |  | SIC- Cost; Excavator [10 h]; Excavator Operator [95.54 h]; Dumper Operator [95.54 h]; Dumper Truck [60 h]; Grader [20 h]; Grader Operator [95.54 h]; Loader [60 h]; Loader Operator [95.54 h]; Un-Skilled Labor [38.53 h]; Supervisor [9.63 h]; Skilled Labor [38.53 h] | 39,546.33 |  | Z G |

| ID | WBS | Activity | Duration | Start | Finish | Predecessors | Complete | Remaining | Planned start | Planned finish | Total float | Free float | Resources | Cost | ROAD WORK | ZONE G |
| --- | --- | --- | --- | --- | --- | --- | --- | --- | --- | --- | --- | --- | --- | --- | --- | --- |
|  | 2 | **Base Course** |  | 2026-10-01 | 2026-10-05 |  |  |  |  |  |  |  |  |  |  |  |
| SDR-2-CON-RW-ZG-1670 |  | Aggregate base course layer | 16d | 2026-10-01 A | 2026-10-05 A | SDR-2-CON-RW-ZG-1640 | 100% |  | 2026-10-05 | 2026-10-22 |  |  | SIC- Cost [120756]; Dumper Operator [114.64 h]; Dumper Truck [120 h]; Grader [10 h]; Grader Operator [114.64 h]; Loader [40 h]; Loader Operator [114.64 h]; Un-Skilled Labor [114.64 h]; Supervisor [114.64 h]; Skilled Labor [114.64 h]; Water Tanker [73 h]; Water Tanker Operator [114.64 h] | 120,755.7 | BAS | Z G |
|  | 8 | **Demolition Work** |  | 2026-10-19 | 2026-11-05 |  |  |  |  |  |  |  |  |  |  |  |
| SDR-2-CON-RW-ZG-1680 |  | Removal of curbstone | 4d | 2026-10-19 A | 2026-10-25 A | SDR-2-CON-RW-ZG-1670 | 100% |  | 2026-11-01 | 2026-11-04 |  |  | SIC- Cost [776]; Un-Skilled Labor [76.43 h]; Supervisor [76.43 h]; Skilled Labor [76.43 h] | 776 |  | Z G |
| SDR-2-CON-RW-ZG-1690 |  | Milling of wearing course | 5d | 2026-10-26 A | 2026-11-05 | SDR-2-CON-RW-ZG-1680 | 25% | 5d | 2026-11-01 | 2026-11-05 | 38d | 0d | SIC- Cost [28300.2]; Un-Skilled Labor [66.88 h]; Supervisor [66.88 h]; Skilled Labor [66.88 h]; Water Tanker [20 h]; Water Tanker Operator [66.88 h]; Road Milling Machine [15 h]; Road Milling Machine Operator [70 h]; Sweeper Machine [20 h]; Sweeper Machine Operator [66.88 h] | 28,300.16 |  | Z G |
|  | 3 | **Asphalt Works** |  | 2026-10-11 | 2026-12-21 |  |  |  |  |  |  |  |  |  |  |  |
| SDR-2-CON-RW-ZG-1700 |  | Asphalt works 1st Layer with MC-01 | 18d | 2026-10-11 A | 2026-11-26 | SDR-2-CON-RW-ZG-1670, SDR-2-CON-RW-ZG-1690 | 90% | 18d | 2026-10-22 | 2026-11-11 | 38d | 0d | SIC- Cost [503392]; Dumper Operator [66.88 h]; Dumper Truck [70 h]; Supervisor [66.88 h]; Sweeper Machine [85.56 h]; Sweeper Machine Operator [66.88 h]; Pneumatic Tire Roller [298.89 h]; Pneumatic Roller Operator [66.88 h]; Asphalt Paver [30.75 h]; Asphalt Paver Operator [20.11 h] | 503,392.37 | ASP | Z G |
| SDR-2-CON-RW-ZG-1710 |  | Asphalt works 2nd layer with RC-02 | 21d | 2026-11-28 | 2026-12-21 | SDR-2-CON-RW-ZG-1700 |  |  |  |  | 38d | 0d | SIC- Cost [299797]; Dumper Operator [40.23 h]; Dumper Truck [50 h]; Supervisor [10.06 h]; Sweeper Machine [70 h]; Sweeper Machine Operator [60.34 h]; Pneumatic Tire Roller [40 h]; Pneumatic Roller Operator [66.88 h]; Asphalt Paver [10 h]; Asphalt Paver Operator [10.06 h] | 299,796.96 |  | Z G |
|  | 4 | **Kerbstone Installation** |  | 2026-11-01 | 2027-01-14 |  |  |  |  |  |  |  |  |  |  |  |
| SDR-2-CON-RW-ZG-2590 |  | Kerbstone Installation "all Types" Part 1 | 18d | 2026-11-01 | 2026-11-21 | SDR-2-CON-RW-ZG-1640 |  |  |  |  | 11d | 0d | SIC- Cost [286905]; Un-Skilled Labor [28.9 h]; Supervisor [10.06 h]; Skilled Labor [28.9 h] | 32,835.82 |  | Z G |
| SDR-2-CON-RW-ZG-1720 |  | Kerbstone Installation "all Types" Part 2 | 21d | 2026-12-22 | 2027-01-14 | SDR-2-CON-RW-ZG-1710 |  |  |  |  | 38d | 0d | SIC- Cost [286905]; Un-Skilled Labor [28.9 h]; Supervisor [10.06 h]; Skilled Labor [28.9 h] | 254,068.7 |  | Z G |
|  | 5 | **Interlock Installation** |  | 2027-01-16 | 2027-02-07 |  |  |  |  |  |  |  |  |  |  |  |
| SDR-2-CON-RW-ZG-1730 |  | Interlock Installation | 20d | 2027-01-16 | 2027-02-07 | SDR-2-CON-RW-ZG-1720 |  |  |  |  | 38d | 0d | SIC- Cost [149309]; Un-Skilled Labor [28.9 h]; Supervisor [10.06 h]; Skilled Labor [28.9 h] | 149,308.57 |  | Z G |
|  | 6 | **Road Marking** |  | 2027-02-08 | 2027-03-17 |  |  |  |  |  |  |  |  |  |  |  |
| SDR-2-CON-RW-ZG-1740 |  | Retroreflective Thermoplastic White Traffic lines | 14d | 2027-02-08 | 2027-02-24 | SDR-2-CON-RW-ZG-1730 |  |  |  |  | 38d | 0d | SIC- Cost [12688.5]; Un-Skilled Labor [19.11 h]; Supervisor [19.11 h]; Skilled Labor [19.11 h] | 12,688.52 |  | Z G |
| SDR-2-CON-RW-ZG-1750 |  | Retroreflective Thermoplastic Yellow, Traffic lines | 14d | 2027-02-25 | 2027-03-17 | SDR-2-CON-RW-ZG-1740, SDR-2-CON-RW-ZG-1660 SS |  |  |  |  | 38d | 0d | SIC- Cost [9772.06]; Un-Skilled Labor [19.11 h]; Supervisor [19.11 h]; Skilled Labor [19.11 h] | 9,772.06 |  | Z G |
|  | 7 | **Traffic Signage** |  | 2027-03-18 | 2027-04-10 |  |  |  |  |  |  |  |  |  |  |  |
| SDR-2-CON-RW-ZG-1760 |  | Single post-Traffic signs Installation | 20d | 2027-03-18 | 2027-04-10 | SDR-2-CON-RW-ZG-1660, SDR-2-CON-RW-ZG-1750 |  |  |  |  | 38d | 36d | SIC- Cost [5283.72]; Un-Skilled Labor [19.11 h]; Supervisor [19.11 h]; Skilled Labor [19.11 h] | 5,283.73 |  | Z G |
|  | 2 | **ROAD WORKS IN ( PH2-G-MCF0 )** |  | 2026-03-25 | 2027-04-13 |  |  |  |  |  |  |  |  |  |  |  |
|  | 1 | **Earth Works Road** |  | 2026-03-25 | 2026-05-13 |  |  |  |  |  |  |  |  |  |  |  |
| SDR-2-CON-RW-ZG-1770 |  | Roadway Excavation and cuttings | 21d | 2026-03-25 A | 2026-05-13 A | SDR-2-CON-RW-ZG-1620 SS+3d | 100% |  | 2026-04-08 | 2026-05-02 |  |  | SIC- Cost [1563524]; Excavator [15 h]; Excavator Operator [143.3 h]; Dumper Operator [143.3 h]; Dumper Truck [150 h]; Grader [25 h]; Grader Operator [143.3 h]; Loader [184.29 h]; Loader Operator [143.3 h]; Un-Skilled Labor [143.3 h]; Supervisor [143.3 h]; Skilled Labor [143.3 h] | 23,081.48 | CUT | Z G |
|  | 10 | **Backfilling Works** |  | 2026-03-25 | 2026-06-18 |  |  |  |  |  |  |  |  |  |  |  |
| SDR-2-CON-RW-ZG-2430 |  | Embankments to the Road 1 Layer | 21d | 2026-03-25 A | 2026-04-15 A | SDR-2-CON-RW-ZG-1770 | 100% |  | 2026-05-03 | 2026-05-26 |  |  | SIC- Cost; Excavator [20 h]; Excavator Operator [134.24 h]; Dumper Operator [95.54 h]; Dumper Truck [100 h]; Grader [20 h]; Grader Operator [95.54 h]; Loader [100 h]; Loader Operator [95.54 h]; Un-Skilled Labor [55.53 h]; Supervisor [55.53 h]; Skilled Labor [55.53 h] | 125,081.93 | BF | Z G |
| SDR-2-CON-RW-ZG-2440 |  | Embankments to the Road 2 Layer | 21d | 2026-04-07 A | 2026-04-30 A | SDR-2-CON-RW-ZG-2430 | 100% |  | 2026-06-01 | 2026-06-24 |  |  | SIC- Cost; Excavator [20 h]; Excavator Operator [355.95 h]; Dumper Operator [95.54 h]; Dumper Truck [100 h]; Grader [20 h]; Grader Operator [95.54 h]; Loader [100 h]; Loader Operator [95.54 h]; Un-Skilled Labor [37.33 h]; Supervisor [37.33 h]; Skilled Labor [37.33 h] | 187,622.9 | BF | Z G |
| SDR-2-CON-RW-ZG-2450 |  | Embankments to the Road 3 Layer | 21d | 2026-05-02 A | 2026-05-21 A | SDR-2-CON-RW-ZG-2440 | 100% |  | 2026-06-25 | 2026-07-19 |  |  | SIC- Cost; Excavator [20 h]; Excavator Operator [859.82 h]; Dumper Operator [95.54 h]; Dumper Truck [100 h]; Grader [20 h]; Grader Operator [95.54 h]; Loader [100 h]; Loader Operator [95.54 h]; Un-Skilled Labor [95.54 h]; Supervisor [95.54 h]; Skilled Labor [95.54 h] | 469,057.24 | BF | Z G |
| SDR-2-CON-RW-ZG-1780 |  | Embankments to the Road 4 Layer | 21d | 2026-05-21 A | 2026-06-18 A | SDR-2-CON-RW-ZG-2450 FS+6d | 100% |  | 2026-07-27 | 2026-08-19 |  |  | SIC- Cost; Excavator [20 h]; Excavator Operator [859.82 h]; Dumper Operator [95.54 h]; Dumper Truck [100 h]; Grader [20 h]; Grader Operator [95.54 h]; Loader [59.52 h]; Loader Operator [95.54 h]; Un-Skilled Labor [95.54 h]; Supervisor [95.54 h]; Skilled Labor [95.54 h] | 781,762.06 | BF | Z G |

| ID | WBS | Activity | Duration | Start | Finish | Predecessors | Complete | Planned start | Planned finish | Total float | Free float | Resources | Cost | ROAD WORK | ZONE G |
| --- | --- | --- | --- | --- | --- | --- | --- | --- | --- | --- | --- | --- | --- | --- | --- |
|  | 11 | **Subgrade** |  | 2026-08-15 | 2026-09-03 |  |  |  |  |  |  |  |  |  |  |
| SDR-2-CON-RW-ZG-1790 |  | Subgrade layer works | 13d | 2026-08-15 A | 2026-09-03 A | SDR-2-CON-RW-ZG-1780 | 100% | 2026-08-20 | 2026-09-03 |  |  | SIC- Cost; Excavator [6 h]; Excavator Operator [5.78 h]; Dumper Operator [67.43 h]; Dumper Truck [70 h]; Grader [10 h]; Grader Operator [9.63 h]; Loader [20 h]; Loader Operator [19.26 h]; Un-Skilled Labor [38.53 h]; Supervisor [9.63 h]; Skilled Labor [38.53 h]; Water Tanker [10 h]; Water Tanker Operator [9.63 h] | 1,025,845.67 | SUB | Z G |
|  | 9 | **Earth Works Plot** |  | 2026-05-04 | 2026-09-07 |  |  |  |  |  |  |  |  |  |  |
| SDR-2-CON-RW-ZG-1800 |  | Plot Excavation for cuttings (all types of soil) | 21d | 2026-05-04 A | 2026-05-18 A | SDR-2-CON-RW-ZG-1770, SDR-2-CON-RW-ZG-1790 | 100% | 2026-09-05 | 2026-09-29 |  |  | SIC- Cost [82090]; Excavator [7.73 h]; Excavator Operator [67.9 h]; Dumper Operator [67.9 h]; Dumper Truck [50 h]; Grader [20 h]; Grader Operator [67.9 h]; Loader [24.33 h]; Loader Operator [67.9 h]; Un-Skilled Labor [67.9 h]; Supervisor [67.9 h]; Skilled Labor [67.9 h] | 82,090.04 |  | Z G |
| SDR-2-CON-RW-ZG-2460 |  | Embankments to the Plot1 Layer | 21d | 2026-05-18 A | 2026-05-24 A | SDR-2-CON-RW-ZG-1800 | 100% | 2026-09-30 | 2026-10-24 |  |  | SIC- Cost; Excavator [10 h]; Excavator Operator [95.54 h]; Dumper Operator [95.54 h]; Dumper Truck [60 h]; Grader [10 h]; Grader Operator [95.54 h]; Loader [46.1 h]; Loader Operator [95.54 h]; Un-Skilled Labor [95.54 h]; Supervisor [95.54 h]; Skilled Labor [95.54 h] | 39,546.33 |  | Z G |
| SDR-2-CON-RW-ZG-1810 |  | Embankments to the Plot 2 Layer | 21d | 2026-05-24 A | 2026-09-07 A | SDR-2-CON-RW-ZG-2460 | 100% | 2026-10-25 | 2026-11-17 |  |  | SIC- Cost; Excavator [10 h]; Excavator Operator [95.54 h]; Dumper Operator [95.54 h]; Dumper Truck [60 h]; Grader [10 h]; Grader Operator [95.54 h]; Loader [60 h]; Loader Operator [95.54 h]; Un-Skilled Labor [28.9 h]; Supervisor [9.63 h]; Skilled Labor [28.9 h] | 39,546.33 |  | Z G |
|  | 2 | **Base Course** |  | 2026-08-31 | 2026-09-14 |  |  |  |  |  |  |  |  |  |  |
| SDR-2-CON-RW-ZG-1820 |  | Aggregate base course layer | 21d | 2026-08-31 A | 2026-09-14 A | SDR-2-CON-RW-ZG-1790 | 100% | 2026-09-05 | 2026-09-29 |  |  | SIC- Cost [120756]; Dumper Operator [124.2 h]; Dumper Truck [130 h]; Grader [130 h]; Grader Operator [124.2 h]; Loader [33 h]; Loader Operator [124.2 h]; Un-Skilled Labor [124.2 h]; Supervisor [124.2 h]; Skilled Labor [124.2 h]; Water Tanker [33 h]; Water Tanker Operator [124.2 h] | 120,755.7 | BAS | Z G |
|  | 8 | **Demolition Work** |  | 2026-11-01 | 2026-11-29 |  |  |  |  |  |  |  |  |  |  |
| SDR-2-CON-RW-ZG-1830 |  | Removal of curbstone | 7d | 2026-11-01 | 2026-11-08 | SDR-2-CON-RW-ZG-1820 |  |  |  | 22d | 11d | SIC- Cost [776]; Un-Skilled Labor [47.77 h]; Supervisor [47.77 h]; Skilled Labor [47.77 h] | 776 |  | Z G |
| SDR-2-CON-RW-ZG-1840 |  | Milling of wearing course | 7d | 2026-11-22 | 2026-11-29 | SDR-2-CON-RW-ZG-2590, SDR-2-CON-RW-ZG-1830 |  |  |  | 11d | 0d | SIC- Cost [28300.2]; Un-Skilled Labor [66.88 h]; Supervisor [66.88 h]; Skilled Labor [66.88 h]; Water Tanker [20 h]; Water Tanker Operator [66.88 h]; Road Milling Machine [10 h]; Road Milling Machine Operator [70 h]; Sweeper Machine [20 h]; Sweeper Machine Operator [66.88 h] | 28,300.16 |  | Z G |
|  | 3 | **Asphalt Works** |  | 2026-09-15 | 2026-12-23 |  |  |  |  |  |  |  |  |  |  |
| SDR-2-CON-RW-ZG-1850 |  | Asphalt works 1st Layer with MC-01 | 17d | 2026-09-15 A | 2026-09-24 A | SDR-2-CON-RW-ZG-1820 FF, SDR-2-CON-RW-ZG-1840 FF | 100% | 2026-10-17 | 2026-11-04 |  |  | SIC- Cost [503392]; Dumper Operator [57.32 h]; Dumper Truck [60 h]; Supervisor [10.06 h]; Sweeper Machine [122.86 h]; Sweeper Machine Operator [57.32 h]; Pneumatic Tire Roller [117 h]; Pneumatic Roller Operator [57.32 h]; Asphalt Paver [20.5 h]; Asphalt Paver Operator [20.11 h] | 503,392.37 | ASP | Z G |
| SDR-2-CON-RW-ZG-1860 |  | Asphalt works 2nd layer with RC-02 | 21d | 2026-11-30 | 2026-12-23 | SDR-2-CON-RW-ZG-1850 |  |  |  | 11d | 0d | SIC- Cost [299797]; Dumper Operator [57.32 h]; Dumper Truck [60 h]; Supervisor [10.06 h]; Sweeper Machine [40 h]; Sweeper Machine Operator [57.32 h]; Pneumatic Tire Roller [40 h]; Pneumatic Roller Operator [57.32 h]; Asphalt Paver [17 h]; Asphalt Paver Operator [17.1 h] | 299,796.96 |  | Z G |
|  | 4 | **Kerbstone Installation** |  | 2026-11-01 | 2027-01-17 |  |  |  |  |  |  |  |  |  |  |
| SDR-2-CON-RW-ZG-2600 |  | Kerbstone Installation "all Types" Part 1 | 18d | 2026-11-01 | 2026-11-21 | SDR-2-CON-RW-ZG-1790 |  |  |  | 9d | 0d | SIC- Cost [286905]; Un-Skilled Labor [66.88 h]; Supervisor [10.06 h]; Skilled Labor [66.88 h] | 32,835.82 |  | Z G |
| SDR-2-CON-RW-ZG-1870 |  | Kerbstone Installation "all Types" Part 2 | 21d | 2026-12-24 | 2027-01-17 | SDR-2-CON-RW-ZG-1860 |  |  |  | 11d | 0d | SIC- Cost [286905]; Un-Skilled Labor [66.88 h]; Supervisor [10.06 h]; Skilled Labor [66.88 h] | 254,068.7 |  | Z G |
|  | 5 | **Interlock Installation** |  | 2027-01-18 | 2027-02-10 |  |  |  |  |  |  |  |  |  |  |
| SDR-2-CON-RW-ZG-1880 |  | Interlock Installation | 21d | 2027-01-18 | 2027-02-10 | SDR-2-CON-RW-ZG-1870 |  |  |  | 11d | 0d | SIC- Cost [149309]; Un-Skilled Labor [28.9 h]; Supervisor [10.06 h]; Skilled Labor [28.9 h] | 149,308.57 |  | Z G |
|  | 6 | **Road Marking** |  | 2027-02-11 | 2027-03-21 |  |  |  |  |  |  |  |  |  |  |
| SDR-2-CON-RW-ZG-1890 |  | Retroreflective Thermoplastic White Traffic lines | 14d | 2027-02-11 | 2027-02-28 | SDR-2-CON-RW-ZG-1880 |  |  |  | 11d | 0d | SIC- Cost [12688.5]; Un-Skilled Labor [19.11 h]; Supervisor [10.06 h]; Skilled Labor [19.11 h] | 12,688.52 |  | Z G |
| SDR-2-CON-RW-ZG-1900 |  | Retroreflective Thermoplastic Yellow, Traffic lines | 14d | 2027-03-01 | 2027-03-21 | SDR-2-CON-RW-ZG-1890, SDR-2-CON-RW-ZG-1810 SS |  |  |  | 11d | 0d | SIC- Cost [9772.06]; Un-Skilled Labor [19.11 h]; Supervisor [19.11 h]; Skilled Labor [19.11 h] | 9,772.06 |  | Z G |
|  | 7 | **Traffic Signage** |  | 2027-03-22 | 2027-04-13 |  |  |  |  |  |  |  |  |  |  |
| SDR-2-CON-RW-ZG-1910 |  | Single post-Traffic signs Installation | 20d | 2027-03-22 | 2027-04-13 | SDR-2-CON-RW-ZG-1810, SDR-2-CON-RW-ZG-1900 |  |  |  | 11d | 0d | SIC- Cost [5283.72]; Un-Skilled Labor [19.11 h]; Supervisor [19.11 h]; Skilled Labor [19.11 h] | 5,283.73 |  | Z G |

| ID | WBS | Activity | Duration | Start | Finish | Predecessors | Complete | Remaining | Planned start | Planned finish | Total float | Free float | Resources | Cost | ROAD WORK | ZONE G |
| --- | --- | --- | --- | --- | --- | --- | --- | --- | --- | --- | --- | --- | --- | --- | --- | --- |
|  | 3 | **ROAD WORKS IN ( PH2-G-MCG0 )** |  | 2026-03-15 | 2027-04-15 |  |  |  |  |  |  |  |  |  |  |  |
|  | 1 | **Earth Works Road** |  | 2026-03-26 | 2026-05-13 |  |  |  |  |  |  |  |  |  |  |  |
| SDR-2-CON-RW-ZG-1920 |  | Roadway Excavation and cuttings | 21d | 2026-03-26 A | 2026-05-13 A | SDR-2-CON-RW-ZG-1770 SS | 100% |  | 2026-04-08 | 2026-05-02 |  |  | SIC- Cost [1563524]; Excavator [10 h]; Excavator Operator [143.3 h]; Dumper Operator [143.3 h]; Dumper Truck [150 h]; Grader [10 h]; Grader Operator [143.3 h]; Loader [60 h]; Loader Operator [143.3 h]; Un-Skilled Labor [143.3 h]; Supervisor [143.3 h]; Skilled Labor [143.3 h] | 23,081.48 | CUT | Z G |
|  | 10 | **Backfilling Works** |  | 2026-03-15 | 2026-07-11 |  |  |  |  |  |  |  |  |  |  |  |
| SDR-2-CON-RW-ZG-2470 |  | Embankments to the Road 1 Layer | 21d | 2026-03-15 A | 2026-04-02 A | SDR-2-CON-RW-ZG-1920 | 100% |  | 2026-05-03 | 2026-05-26 |  |  | SIC- Cost; Excavator [10 h]; Excavator Operator [95.54 h]; Dumper Operator [95.54 h]; Dumper Truck [100 h]; Grader [10 h]; Grader Operator [95.54 h]; Loader [100 h]; Loader Operator [95.54 h]; Un-Skilled Labor [55.53 h]; Supervisor [55.53 h]; Skilled Labor [55.53 h] | 125,081.93 | BF | Z G |
| SDR-2-CON-RW-ZG-2480 |  | Embankments to the Road 2 Layer | 21d | 2026-04-07 A | 2026-04-16 A | SDR-2-CON-RW-ZG-2470 | 100% |  | 2026-06-01 | 2026-06-24 |  |  | SIC- Cost; Excavator [10 h]; Excavator Operator [95.54 h]; Dumper Operator [95.54 h]; Dumper Truck [100 h]; Grader [10 h]; Grader Operator [95.54 h]; Loader [80 h]; Loader Operator [95.54 h]; Un-Skilled Labor [37.33 h]; Supervisor [37.33 h]; Skilled Labor [37.33 h] | 187,622.9 | BF | Z G |
| SDR-2-CON-RW-ZG-2490 |  | Embankments to the Road 3 Layer | 21d | 2026-04-25 A | 2026-05-07 A | SDR-2-CON-RW-ZG-2480 | 100% |  | 2026-06-25 | 2026-07-19 |  |  | SIC- Cost; Excavator [10 h]; Excavator Operator [95.54 h]; Dumper Operator [95.54 h]; Dumper Truck [100 h]; Grader [10 h]; Grader Operator [95.54 h]; Loader [80 h]; Loader Operator [95.54 h]; Un-Skilled Labor [95.54 h]; Supervisor [95.54 h]; Skilled Labor [95.54 h] | 469,057.24 | BF | Z G |
| SDR-2-CON-RW-ZG-1930 |  | Embankments to the Road 4 Layer | 21d | 2026-05-02 A | 2026-07-11 A | SDR-2-CON-RW-ZG-2490 FS+3d | 100% |  | 2026-07-23 | 2026-08-16 |  |  | SIC- Cost; Excavator [10 h]; Excavator Operator [95.54 h]; Dumper Operator [95.54 h]; Dumper Truck [100 h]; Grader [10 h]; Grader Operator [95.54 h]; Loader [60 h]; Loader Operator [95.54 h]; Un-Skilled Labor [95.54 h]; Supervisor [95.54 h]; Skilled Labor [95.54 h] | 781,762.06 | BF | Z G |
|  | 11 | **Subgrade** |  | 2026-08-15 | 2026-08-31 |  |  |  |  |  |  |  |  |  |  |  |
| SDR-2-CON-RW-ZG-1940 |  | Subgrade layer works | 21d | 2026-08-15 A | 2026-08-31 A | SDR-2-CON-RW-ZG-1930 FS+3d | 100% |  | 2026-08-20 | 2026-09-13 |  |  | SIC- Cost; Excavator [6 h]; Excavator Operator [5.78 h]; Dumper Operator [48.16 h]; Dumper Truck [50 h]; Grader [10 h]; Grader Operator [9.63 h]; Loader [20 h]; Loader Operator [19.26 h]; Un-Skilled Labor [38.53 h]; Supervisor [9.63 h]; Skilled Labor [38.53 h]; Water Tanker [40 h]; Water Tanker Operator [38.53 h] | 1,025,845.67 | SUB | Z G |
|  | 9 | **Earth Works Plot** |  | 2026-05-18 | 2026-11-02 |  |  |  |  |  |  |  |  |  |  |  |
| SDR-2-CON-RW-ZG-1950 |  | Plot Excavation for cuttings (all types of soil) | 21d | 2026-05-18 A | 2026-11-01 | SDR-2-CON-RW-ZG-1920, SDR-2-CON-RW-ZG-1940 | 55% | 1d | 2026-09-14 | 2026-10-08 | 25d | 0d | SIC- Cost [82090]; Excavator [10 h]; Excavator Operator [143.3 h]; Dumper Operator [143.3 h]; Dumper Truck [150 h]; Grader [10 h]; Grader Operator [143.3 h]; Loader [40 h]; Loader Operator [143.3 h]; Un-Skilled Labor [143.3 h]; Supervisor [143.3 h]; Skilled Labor [143.3 h] | 82,090.04 |  | Z G |
| SDR-2-CON-RW-ZG-2500 |  | Embankments to the Plot 1 Layer | 21d | 2026-06-11 A | 2026-11-01 | SDR-2-CON-RW-ZG-1950 FF | 80% | 1d | 2026-10-10 | 2026-11-02 | 59d | 0d | SIC- Cost; Excavator [20 h]; Excavator Operator [95.54 h]; Dumper Operator [95.54 h]; Dumper Truck [60 h]; Grader [20 h]; Grader Operator [95.54 h]; Loader [31.1 h]; Loader Operator [95.54 h]; Un-Skilled Labor [95.54 h]; Supervisor [95.54 h]; Skilled Labor [95.54 h] | 39,546.33 |  | Z G |
| SDR-2-CON-RW-ZG-1960 |  | Embankments to the Plot 2 Layer | 21d | 2026-06-22 A | 2026-11-02 | SDR-2-CON-RW-ZG-2500 | 55% | 1d | 2026-11-03 | 2026-11-26 | 77d | 68d | SIC- Cost; Excavator [20 h]; Excavator Operator [95.54 h]; Dumper Operator [95.54 h]; Dumper Truck [60 h]; Grader [20 h]; Grader Operator [95.54 h]; Loader [60 h]; Loader Operator [95.54 h]; Un-Skilled Labor [28.9 h]; Supervisor [9.63 h]; Skilled Labor [28.9 h] | 39,546.33 |  | Z G |
|  | 2 | **Base Course** |  | 2026-08-27 | 2026-09-03 |  |  |  |  |  |  |  |  |  |  |  |
| SDR-2-CON-RW-ZG-1970 |  | Aggregate base course layer | 21d | 2026-08-27 A | 2026-09-03 A | SDR-2-CON-RW-ZG-1940 | 100% |  | 2026-09-14 | 2026-10-08 |  |  | SIC- Cost [120756]; Dumper Operator [105.09 h]; Dumper Truck [110 h]; Grader [10 h]; Grader Operator [105.09 h]; Loader [40 h]; Loader Operator [105.09 h]; Un-Skilled Labor [105.09 h]; Supervisor [105.09 h]; Skilled Labor [105.09 h]; Water Tanker [83 h]; Water Tanker Operator [105.09 h] | 120,755.7 | BAS | Z G |
|  | 8 | **Demolition Work** |  | 2026-11-01 | 2026-12-07 |  |  |  |  |  |  |  |  |  |  |  |
| SDR-2-CON-RW-ZG-1980 |  | Removal of curbstone | 8d | 2026-11-01 | 2026-11-09 | SDR-2-CON-RW-ZG-1970, SDR-2-CON-RW-ZG-1950 SS |  |  |  |  | 25d | 16d | SIC- Cost [776]; Un-Skilled Labor [76.43 h]; Supervisor [76.43 h]; Skilled Labor [76.43 h] | 776 |  | Z G |
| SDR-2-CON-RW-ZG-1990 |  | Milling of wearing course | 8d | 2026-11-29 | 2026-12-07 | SDR-2-CON-RW-ZG-2610, SDR-2-CON-RW-ZG-2600 FS+6d, SDR-2-CON-RW-ZG-1980 |  |  |  |  | 9d | 0d | SIC- Cost [28300.2]; Un-Skilled Labor [66.88 h]; Supervisor [66.88 h]; Skilled Labor [66.88 h]; Water Tanker [20 h]; Water Tanker Operator [66.88 h]; Road Milling Machine [10 h]; Road Milling Machine Operator [70 h]; Sweeper Machine [40 h]; Sweeper Machine Operator [66.88 h] | 28,300.16 |  | Z G |
|  | 3 | **Asphalt Works** |  | 2026-09-05 | 2026-12-26 |  |  |  |  |  |  |  |  |  |  |  |
| SDR-2-CON-RW-ZG-2000 |  | Asphalt works 1st Layer with MC-01 | 12d | 2026-09-05 A | 2026-09-24 A | SDR-2-CON-RW-ZG-1970, SDR-2-CON-RW-ZG-1990 FF | 100% |  | 2026-10-28 | 2026-11-10 |  |  | SIC- Cost [503392]; Dumper Operator [76.43 h]; Dumper Truck [80 h]; Supervisor [76.43 h]; Sweeper Machine [121.32 h]; Sweeper Machine Operator [76.43 h]; Pneumatic Tire Roller [80 h]; Pneumatic Roller Operator [76.43 h]; Asphalt Paver [26.62 h]; Asphalt Paver Operator [76.43 h] | 503,392.37 | ASP | Z G |
| SDR-2-CON-RW-ZG-2010 |  | Asphalt works 2nd layer with RC-02 | 16d | 2026-12-08 | 2026-12-26 | SDR-2-CON-RW-ZG-2460, SDR-2-CON-RW-ZG-2000 |  |  |  |  | 9d | 0d | SIC- Cost [299797]; Dumper Operator [76.43 h]; Dumper Truck [50 h]; Supervisor [10.06 h]; Sweeper Machine [40 h]; Sweeper Machine Operator [76.43 h]; Pneumatic Tire Roller [40 h]; Pneumatic Roller Operator [76.43 h]; Asphalt Paver [12 h]; Asphalt Paver Operator [12.07 h] | 299,796.96 |  | Z G |
|  | 4 | **Kerbstone Installation** |  | 2026-11-01 | 2027-01-19 |  |  |  |  |  |  |  |  |  |  |  |
| SDR-2-CON-RW-ZG-2610 |  | Kerbstone Installation "all Types" Part 1 | 18d | 2026-11-01 | 2026-11-21 | SDR-2-CON-RW-ZG-1940 |  |  |  |  | 15d | 6d | SIC- Cost [286905]; Un-Skilled Labor [28.9 h]; Supervisor [10.06 h]; Skilled Labor [28.9 h] | 32,835.82 |  | Z G |
| SDR-2-CON-RW-ZG-2020 |  | Kerbstone Installation "all Types" Part 2 | 21d | 2026-12-27 | 2027-01-19 | SDR-2-CON-RW-ZG-1810, SDR-2-CON-RW-ZG-2420, SDR-2-CON-RW-ZG-2010 |  |  |  |  | 9d | 0d | SIC- Cost [286905]; Un-Skilled Labor [28.9 h]; Supervisor [10.06 h]; Skilled Labor [28.9 h] | 254,068.7 |  | Z G |

| ID | WBS | Activity | Duration | Start | Finish | Predecessors | Complete | Planned start | Planned finish | Total float | Free float | Resources | Cost | ZONE G | ROAD WORK |
| --- | --- | --- | --- | --- | --- | --- | --- | --- | --- | --- | --- | --- | --- | --- | --- |
|  | 5 | **Interlock Installation** |  | 2027-01-20 | 2027-02-13 |  |  |  |  |  |  |  |  |  |  |
| SDR-2-CON-RW-ZG-2030 |  | Interlock Installation | 21d | 2027-01-20 | 2027-02-13 | SDR-2-CON-RW-ZG-2020, SDR-2-CON-RW-ZG-1960 SS |  |  |  | 9d | 0d | SIC- Cost [149309]; Un-Skilled Labor [28.9 h]; Supervisor [10.06 h]; Skilled Labor [28.9 h] | 149,308.57 | Z G |  |
|  | 6 | **Road Marking** |  | 2027-02-14 | 2027-03-23 |  |  |  |  |  |  |  |  |  |  |
| SDR-2-CON-RW-ZG-2040 |  | Retroreflective Thermoplastic White Traffic lines | 14d | 2027-02-14 | 2027-03-02 | SDR-2-CON-RW-ZG-2030 |  |  |  | 9d | 0d | SIC- Cost [12688.5]; Un-Skilled Labor [19.11 h]; Supervisor [19.11 h]; Skilled Labor [19.11 h] | 12,688.52 | Z G |  |
| SDR-2-CON-RW-ZG-2050 |  | Retroreflective Thermoplastic Yellow, Traffic lines | 14d | 2027-03-03 | 2027-03-23 | SDR-2-CON-RW-ZG-2040 |  |  |  | 9d | 0d | SIC- Cost [9772.06]; Un-Skilled Labor [19.11 h]; Supervisor [19.11 h]; Skilled Labor [19.11 h] | 9,772.06 | Z G |  |
|  | 7 | **Traffic Signage** |  | 2027-03-24 | 2027-04-15 |  |  |  |  |  |  |  |  |  |  |
| SDR-2-CON-RW-ZG-2060 |  | Single post-Traffic signs Installation | 20d | 2027-03-24 | 2027-04-15 | SDR-2-CON-RW-ZG-1960, SDR-2-CON-RW-ZG-2050 |  |  |  | 9d | 0d | SIC- Cost [5283.72]; Un-Skilled Labor [19.11 h]; Supervisor [19.11 h]; Skilled Labor [19.11 h] | 5,283.73 | Z G |  |
|  | 7 | **ROAD WORKS IN ( PH2-G-MCZ0 )** |  | 2026-03-29 | 2027-03-23 |  |  |  |  |  |  |  |  |  |  |
|  | 1 | **Earth Works Road** |  | 2026-03-29 | 2026-05-14 |  |  |  |  |  |  |  |  |  |  |
| SDR-2-CON-RW-ZG-2070 |  | Roadway Excavation and cuttings | 21d | 2026-03-29 A | 2026-05-14 A | SDR-2-CON-RW-ZG-1920 SS | 100% | 2026-04-08 | 2026-05-02 |  |  | SIC- Cost [1563524]; Excavator [10 h]; Excavator Operator [143.3 h]; Dumper Operator [143.3 h]; Dumper Truck [150 h]; Grader [10 h]; Grader Operator [143.3 h]; Loader [60 h]; Loader Operator [143.3 h]; Un-Skilled Labor [143.3 h]; Supervisor [143.3 h]; Skilled Labor [143.3 h] | 23,081.48 | Z G | CUT |
|  | 10 | **Backfilling Works** |  | 2026-03-29 | 2026-07-08 |  |  |  |  |  |  |  |  |  |  |
| SDR-2-CON-RW-ZG-2510 |  | Embankments to the Road 1 Layer | 21d | 2026-03-29 A | 2026-04-08 A | SDR-2-CON-RW-ZG-2070 | 100% | 2026-05-03 | 2026-05-26 |  |  | SIC- Cost; Excavator [68.56 h]; Excavator Operator [95.54 h]; Dumper Operator [95.54 h]; Dumper Truck [100 h]; Grader [75.71 h]; Grader Operator [95.54 h]; Loader [55.71 h]; Loader Operator [95.54 h]; Un-Skilled Labor [55.53 h]; Supervisor [55.53 h]; Skilled Labor [55.53 h] | 125,081.93 | Z G | BF |
| SDR-2-CON-RW-ZG-2520 |  | Embankments to the Road 2 Layer | 21d | 2026-04-28 A | 2026-05-24 A | SDR-2-CON-RW-ZG-2510 | 100% | 2026-06-01 | 2026-06-24 |  |  | SIC- Cost; Excavator [68.56 h]; Excavator Operator [95.54 h]; Dumper Operator [95.54 h]; Dumper Truck [100 h]; Grader [80.48 h]; Grader Operator [95.54 h]; Loader [60.48 h]; Loader Operator [95.54 h]; Un-Skilled Labor [37.33 h]; Supervisor [37.33 h]; Skilled Labor [37.33 h] | 187,622.9 | Z G | BF |
| SDR-2-CON-RW-ZG-2530 |  | Embankments to the Road 3 Layer | 21d | 2026-05-18 A | 2026-05-31 A | SDR-2-CON-RW-ZG-2520 | 100% | 2026-06-25 | 2026-07-19 |  |  | SIC- Cost; Excavator [68.56 h]; Excavator Operator [95.54 h]; Dumper Operator [95.54 h]; Dumper Truck [100 h]; Grader [100 h]; Grader Operator [95.54 h]; Loader [100 h]; Loader Operator [95.54 h]; Un-Skilled Labor [95.54 h]; Supervisor [95.54 h]; Skilled Labor [95.54 h] | 469,057.24 | Z G | BF |
| SDR-2-CON-RW-ZG-2080 |  | Embankments to the Road 4 Layer | 21d | 2026-05-24 A | 2026-07-08 A | SDR-2-CON-RW-ZG-2530 | 100% | 2026-07-20 | 2026-08-12 |  |  | SIC- Cost; Excavator [68.56 h]; Excavator Operator [95.54 h]; Dumper Operator [95.54 h]; Dumper Truck [100 h]; Grader [80.48 h]; Grader Operator [95.54 h]; Loader [40.48 h]; Loader Operator [95.54 h]; Un-Skilled Labor [95.54 h]; Supervisor [95.54 h]; Skilled Labor [95.54 h] | 781,762.06 | Z G | BF |
|  | 11 | **Subgrade** |  | 2026-08-20 | 2026-09-09 |  |  |  |  |  |  |  |  |  |  |
| SDR-2-CON-RW-ZG-2090 |  | Subgrade layer works | 21d | 2026-08-20 A | 2026-09-09 A | SDR-2-CON-RW-ZG-2080 | 100% | 2026-08-13 | 2026-09-06 |  |  | SIC- Cost; Excavator [6 h]; Excavator Operator [5.78 h]; Dumper Operator [48.16 h]; Dumper Truck [50 h]; Grader [10 h]; Grader Operator [9.63 h]; Loader [20 h]; Loader Operator [19.26 h]; Un-Skilled Labor [38.53 h]; Supervisor [9.63 h]; Skilled Labor [38.53 h]; Water Tanker [40 h]; Water Tanker Operator [38.53 h] | 1,025,845.67 | Z G | SUB |
|  | 9 | **Earth Works Plot** |  | 2026-04-30 | 2026-05-24 |  |  |  |  |  |  |  |  |  |  |
| SDR-2-CON-RW-ZG-2100 |  | Plot Excavation for cuttings (all types of soil) | 21d | 2026-04-30 A | 2026-05-10 A | SDR-2-CON-RW-ZG-2070, SDR-2-CON-RW-ZG-2090 | 100% | 2026-09-07 | 2026-10-01 |  |  | SIC- Cost [82090]; Excavator [9 h]; Excavator Operator [143.3 h]; Dumper Operator [143.3 h]; Dumper Truck [10 h]; Grader [10 h]; Grader Operator [143.3 h]; Loader [23 h]; Loader Operator [143.3 h]; Un-Skilled Labor [143.3 h]; Supervisor [143.3 h]; Skilled Labor [143.3 h] | 82,090.04 | Z G |  |
| SDR-2-CON-RW-ZG-2540 |  | Embankments to the Plot 1 Layer | 21d | 2026-05-10 A | 2026-05-17 A | SDR-2-CON-RW-ZG-2070, SDR-2-CON-RW-ZG-2100 | 100% | 2026-10-03 | 2026-10-26 |  |  | SIC- Cost; Excavator [10 h]; Excavator Operator [81.48 h]; Dumper Operator [81.48 h]; Dumper Truck [60 h]; Grader [10 h]; Grader Operator [81.48 h]; Loader [40 h]; Loader Operator [81.48 h]; Un-Skilled Labor [81.48 h]; Supervisor [81.48 h]; Skilled Labor [81.48 h] | 39,546.33 | Z G |  |
| SDR-2-CON-RW-ZG-2110 |  | Embankments to the Plot 2 Layer | 21d | 2026-05-17 A | 2026-05-24 A | SDR-2-CON-RW-ZG-2540 | 100% | 2026-10-27 | 2026-11-19 |  |  | SIC- Cost; Excavator [10 h]; Excavator Operator [81.48 h]; Dumper Operator [81.48 h]; Dumper Truck [60 h]; Grader [10 h]; Grader Operator [81.48 h]; Loader [29.44 h]; Loader Operator [81.48 h]; Un-Skilled Labor [28.9 h]; Supervisor [9.63 h]; Skilled Labor [28.9 h] | 39,546.33 | Z G |  |
|  | 2 | **Base Course** |  | 2026-09-10 | 2026-09-17 |  |  |  |  |  |  |  |  |  |  |
| SDR-2-CON-RW-ZG-2120 |  | Aggregate base course layer | 21d | 2026-09-10 A | 2026-09-17 A | SDR-2-CON-RW-ZG-2090 | 100% | 2026-09-07 | 2026-10-01 |  |  | SIC- Cost [120756]; Dumper Operator [105.09 h]; Dumper Truck [110 h]; Grader [10 h]; Grader Operator [105.09 h]; Loader [23.67 h]; Loader Operator [105.09 h]; Un-Skilled Labor [105.09 h]; Supervisor [105.09 h]; Skilled Labor [105.09 h]; Water Tanker [23.67 h]; Water Tanker Operator [105.09 h] | 120,755.7 | Z G | BAS |
|  | 8 | **Demolition Work** |  | 2026-11-01 | 2026-11-17 |  |  |  |  |  |  |  |  |  |  |
| SDR-2-CON-RW-ZG-2130 |  | Removal of curbstone | 5d | 2026-11-01 | 2026-11-05 | SDR-2-PRO-DEL-E-1190, SDR-2-CON-RW-ZG-2120 |  |  |  | 29d | 0d | SIC- Cost [776]; Un-Skilled Labor [57.32 h]; Supervisor [57.32 h]; Skilled Labor [57.32 h] | 776 | Z G |  |
| SDR-2-CON-RW-ZG-2140 |  | Milling of wearing course | 10d | 2026-11-07 | 2026-11-17 | SDR-2-CON-RW-ZG-2130, SDR-2-CON-RW-ZG-2100 |  |  |  | 29d | 0d | SIC- Cost [28300.2]; Un-Skilled Labor [66.88 h]; Supervisor [66.88 h]; Skilled Labor [66.88 h]; Water Tanker [20 h]; Water Tanker Operator [66.88 h]; Road Milling Machine [10 h]; Road Milling Machine Operator [70 h]; Sweeper Machine [80 h]; Sweeper Machine Operator [66.88 h] | 28,300.16 | Z G |  |

| ID | WBS | Activity | Duration | Start | Finish | Predecessors | Complete | Remaining | Planned start | Planned finish | Total float | Free float | Resources | Cost | ROAD WORK | ZONE G | ZONE A |
| --- | --- | --- | --- | --- | --- | --- | --- | --- | --- | --- | --- | --- | --- | --- | --- | --- | --- |
|  | 3 | **Asphalt Works** |  | 2026-09-14 | 2026-12-02 |  |  |  |  |  |  |  |  |  |  |  |  |
| SDR-2-CON-RW-ZG-2150 |  | Asphalt works 1st Layer with MC-01 | 12d | 2026-09-14 A | 2026-09-26 A | SDR-2-CON-RW-ZG-2120, SDR-2-CON-RW-ZG-2140 FF | 100% |  | 2026-11-01 | 2026-11-14 |  |  | SIC- Cost [503392]; Dumper Operator [66.88 h]; Dumper Truck [70 h]; Supervisor [66.88 h]; Sweeper Machine [123.75 h]; Sweeper Machine Operator [66.88 h]; Pneumatic Tire Roller [70 h]; Pneumatic Roller Operator [66.88 h]; Asphalt Paver [51 h]; Asphalt Paver Operator [66.88 h] | 503,392.37 | ASP | Z G |  |
| SDR-2-CON-RW-ZG-2160 |  | Asphalt works 2nd layer with RC-02 | 13d | 2026-11-18 | 2026-12-02 | SDR-2-CON-RW-ZG-2150 |  |  |  |  | 29d | 0d | SIC- Cost [299797]; Dumper Operator [66.88 h]; Dumper Truck [70 h]; Supervisor [10.06 h]; Sweeper Machine [40 h]; Sweeper Machine Operator [66.88 h]; Pneumatic Tire Roller [40 h]; Pneumatic Roller Operator [66.88 h]; Asphalt Paver [20 h]; Asphalt Paver Operator [35.2 h] | 299,796.96 |  | Z G |  |
|  | 4 | **Kerbstone Installation** |  | 2026-11-01 | 2026-12-27 |  |  |  |  |  |  |  |  |  |  |  |  |
| SDR-2-CON-RW-ZG-2620 |  | Kerbstone Installation "all Types" Part 1 | 18d | 2026-11-01 | 2026-11-21 | SDR-2-CON-RW-ZG-2120 |  |  |  |  | 39d | 10d | SIC- Cost [286905]; Un-Skilled Labor [66.88 h]; Supervisor [10.06 h]; Skilled Labor [66.88 h] | 32,835.82 |  | Z G |  |
| SDR-2-CON-RW-ZG-2170 |  | Kerbstone Installation "all Types" Part 2 | 21d | 2026-12-03 | 2026-12-27 | SDR-2-CON-RW-ZG-2160, SDR-2-CON-RW-ZG-2620 |  |  |  |  | 29d | 0d | SIC- Cost [286905]; Un-Skilled Labor [66.88 h]; Supervisor [10.06 h]; Skilled Labor [66.88 h] | 254,068.7 |  | Z G |  |
|  | 5 | **Interlock Installation** |  | 2026-12-28 | 2027-01-20 |  |  |  |  |  |  |  |  |  |  |  |  |
| SDR-2-CON-RW-ZG-2180 |  | Interlock Installation | 21d | 2026-12-28 | 2027-01-20 | SDR-2-CON-RW-ZG-2170 |  |  |  |  | 29d | 0d | SIC- Cost [149309]; Un-Skilled Labor [28.9 h]; Supervisor [10.06 h]; Skilled Labor [28.9 h] | 149,308.57 |  | Z G |  |
|  | 6 | **Road Marking** |  | 2027-01-21 | 2027-02-23 |  |  |  |  |  |  |  |  |  |  |  |  |
| SDR-2-CON-RW-ZG-2190 |  | Retroreflective Thermoplastic White Traffic lines | 14d | 2027-01-21 | 2027-02-06 | SDR-2-CON-RW-ZG-2180 |  |  |  |  | 29d | 0d | SIC- Cost [12688.5]; Un-Skilled Labor [19.11 h]; Supervisor [19.11 h]; Skilled Labor [19.11 h] | 12,688.52 |  | Z G |  |
| SDR-2-CON-RW-ZG-2200 |  | Retroreflective Thermoplastic Yellow, Traffic lines | 14d | 2027-02-07 | 2027-02-23 | SDR-2-CON-RW-ZG-2190, SDR-2-CON-RW-ZG-2110 SS |  |  |  |  | 29d | 0d | SIC- Cost [9772.06]; Un-Skilled Labor [19.11 h]; Supervisor [19.11 h]; Skilled Labor [19.11 h] | 9,772.06 |  | Z G |  |
|  | 7 | **Traffic Signage** |  | 2027-02-24 | 2027-03-23 |  |  |  |  |  |  |  |  |  |  |  |  |
| SDR-2-CON-RW-ZG-2210 |  | Single post-Traffic signs Installation | 20d | 2027-02-24 | 2027-03-23 | SDR-2-CON-RW-ZG-2110, SDR-2-CON-RW-ZG-2200 |  |  |  |  | 29d | 0d | SIC- Cost [5283.72]; Un-Skilled Labor [19.11 h]; Supervisor [19.11 h]; Skilled Labor [19.11 h] | 5,283.73 |  | Z G |  |
|  | ST | **Storm Water Drainage Network** |  | 2026-03-24 | 2027-05-24 |  |  |  |  |  |  |  |  |  |  |  |  |
|  | ZA | **ZONE A** |  | 2026-03-24 | 2027-05-24 |  |  |  |  |  |  |  |  |  |  |  |  |
|  | 11 | **STORM WATER LINE IN ( PH2-A-MCB0 )** |  | 2026-05-19 | 2027-03-07 |  |  |  |  |  |  |  |  |  |  |  |  |
|  | 8 | **Pipes Works** |  | 2026-05-19 | 2027-02-14 |  |  |  |  |  |  |  |  |  |  |  |  |
|  | 1 | **Excavation** |  | 2026-05-19 | 2026-07-07 |  |  |  |  |  |  |  |  |  |  |  |  |
| SDR-2-CON-ST-ZA-6900 |  | Excavation for GRP Pipes Section 1 | 21d | 2026-05-19 A | 2026-05-31 A | SDR-2-CON-RW-ZA-2870, SDR-2-ENG-APP-M-1130, SDR-2-PRO-MSS-C-1080 FS+2d, SDR-2-PRO-ST-M-1000, SDR-2-PRO-DEL-M-1040 SS, SDR-2-PRO-DES-C-1030 SS | 100% |  | 2026-07-12 | 2026-08-04 |  |  | SIC- Cost [9218]; Labor [44.81 h]; Excavator [38.8 h]; Excavator Operator [95.54 h] | 37,600.88 |  |  | Z A |
| SDR-2-CON-ST-ZA-6360 |  | Excavation for GRP Pipes Section 2 | 21d | 2026-06-01 A | 2026-06-08 A | SDR-2-CON-ST-ZA-6900 | 100% |  | 2026-08-05 | 2026-08-29 |  |  | SIC- Cost [9218]; Labor [44.81 h]; Excavator [38.8 h]; Excavator Operator [95.54 h] | 37,600.88 |  |  | Z A |
| SDR-2-CON-ST-ZA-1000 |  | Excavation for GRP Pipes Section 3 | 21d | 2026-06-08 A | 2026-07-07 A | SDR-2-CON-ST-ZA-6360, SDR-2-PRO-DES-C-1070, SDR-2-PRO-DEL-M-1020 SS | 100% |  | 2026-09-02 | 2026-09-27 |  |  | SIC- Cost [9218]; Labor [44.81 h]; Excavator [38.8 h]; Excavator Operator [95.54 h] | 37,600.9 |  |  | Z A |
|  | 7 | **bedding Works** |  | 2026-06-27 | 2026-07-09 |  |  |  |  |  |  |  |  |  |  |  |  |
| SDR-2-CON-ST-ZA-3450 |  | Sand bedding for GRP Pipes | 21d | 2026-06-27 A | 2026-07-09 A | SDR-2-CON-ST-ZA-1000 FS+4d | 100% |  | 2026-10-03 | 2026-10-26 |  |  | SIC- Cost; Labor [95.54 h]; Excavator [10 h]; Excavator Operator [9.63 h]; Loader [20 h] | 28,200.66 |  |  | Z A |
|  | 2 | **Pipes Laying** |  | 2026-08-20 | 2027-01-18 |  |  |  |  |  |  |  |  |  |  |  |  |
| SDR-2-CON-ST-ZA-1090 |  | Install ST GRP Pipes | 21d | 2026-08-20 A | 2027-01-18 | SDR-2-PRO-DES-C-1020 FF, SDR-2-CON-ST-ZA-3450 | 65% | 1d | 2026-10-27 | 2026-11-19 | 7.1d | 0d | Pipe Fitter [95.54 h]; SIC- Cost; Labor [95.54 h] | 253,805.96 |  |  | Z A |

| ID | WBS | Activity | Duration | Start | Finish | Predecessors | Complete | Remaining | Planned start | Planned finish | Total float | Free float | Resources | Cost | ZONE A |
| --- | --- | --- | --- | --- | --- | --- | --- | --- | --- | --- | --- | --- | --- | --- | --- |
|  | 6 | **Testing** |  | 2027-01-18 | 2027-02-11 |  |  |  |  |  |  |  |  |  |  |
| SDR-2-CON-ST-ZA-3440 |  | Testing ST GRP Pipes | 21d | 2027-01-18 | 2027-02-11 | SDR-2-PRO-DEL-E-1200, SDR-2-CON-ST-ZA-1090 |  |  |  |  | 7.1d | 0d | Pipe Fitter [60.34 h]; SIC- Cost; Labor [60.34 h] | 56,401.3 | Z A |
|  | 3 | **Backfilling** |  | 2027-01-20 | 2027-02-14 |  |  |  |  |  |  |  |  |  |  |
| SDR-2-CON-ST-ZA-1140 |  | Backfilling ST GRP Pipes | 21d | 2027-01-20 | 2027-02-14 | SDR-2-CON-ST-ZA-3440 SS+2d |  |  |  |  | 7.1d |  | SIC- Cost; Labor [95.54 h]; Excavator [16.12 h]; Excavator Operator [95.54 h] | 112,802.64 | Z A |
|  | 4 | **Manholes** |  | 2026-06-08 | 2027-02-23 |  |  |  |  |  |  |  |  |  |  |
|  | 1 | **Excavation** |  | 2026-06-08 | 2026-12-20 |  |  |  |  |  |  |  |  |  |  |
| SDR-2-CON-ST-ZA-6910 |  | Excavation Manholes Section 1 | 21d | 2026-06-08 A | 2026-08-31 A | SDR-2-CON-ST-ZA-6900 SS, SDR-2-PRO-DEL-M-1030 SS, SDR-2-PRO-ST-M-1050 SS | 100% |  | 2026-07-22 | 2026-08-15 |  |  | SIC- Cost; Labor [6.4 h]; Excavator [20 h]; Excavator Operator [95.54 h] | 21,055.04 | Z A |
| SDR-2-CON-ST-ZA-6370 |  | Excavation Manholes Section 2 | 21d | 2026-06-15 A | 2026-06-22 A | SDR-2-CON-ST-ZA-6910 | 100% |  | 2026-08-16 | 2026-09-08 |  |  | SIC- Cost; Labor [6.4 h]; Excavator [20 h]; Excavator Operator [95.54 h] | 21,055.04 | Z A |
| SDR-2-CON-ST-ZA-1210 |  | Excavation Manholes Section 3 | 21d | 2026-06-22 A | 2026-12-20 | SDR-2-CON-ST-ZA-6370, SDR-2-PRO-DEL-E-1090 FF | 90% | 1d | 2026-09-09 | 2026-10-04 | 8d |  | SIC- Cost; Labor [6.4 h]; Excavator [20 h]; Excavator Operator [95.54 h] | 21,055.04 | Z A |
|  | 2 | **bedding Works** |  | 2026-08-20 | 2026-12-29 |  |  |  |  |  |  |  |  |  |  |
| SDR-2-CON-ST-ZA-3520 |  | Sand bedding for Manholes | 21d | 2026-08-20 A | 2026-12-29 | SDR-2-PRO-DEL-E-1050, SDR-2-CON-ST-ZA-1210 FF, SDR-2-PRO-DES-C-1060 FF | 50% | 1d | 2026-10-05 | 2026-10-28 | 0d |  | SIC- Cost [18560]; Labor [665.6 h]; Excavator [7.04 h]; Excavator Operator [7.71 h] | 42,110.21 | Z A |
|  | 3 | **Install Manholes** |  | 2026-08-20 | 2026-12-29 |  |  |  |  |  |  |  |  |  |  |
| SDR-2-CON-ST-ZA-3600 |  | Manholes Installation | 21d | 2026-08-20 A | 2026-12-29 | SDR-2-CON-ST-ZA-3520 FF, SDR-2-PRO-DEL-M-1030 FF, SDR-2-PRO-DEL-M-1020 FF, SDR-2-PRO-ST-E-1070 FF, SDR-2-CON-RW-ZG-2600 FF | 50% | 1d | 2026-10-29 | 2026-11-22 | 0d |  | Pipe Fitter [95.54 h]; SIC- Cost [18560]; Labor [95.54 h]; Excavator [11.71 h]; Excavator Operator [95.54 h] | 189,495.94 | Z A |
|  | 4 | **Testing** |  | 2027-01-05 | 2027-01-28 |  |  |  |  |  |  |  |  |  |  |
| SDR-2-CON-ST-ZA-3680 |  | Testing for Manholes | 21d | 2027-01-05 | 2027-01-28 | SDR-2-CON-ST-ZA-3600 FS+5d |  |  |  |  | 0d |  | SIC- Cost [18560]; Labor [38.53 h]; Excavator [6 h]; Excavator Operator [6.03 h] | 42,110.87 | Z A |
|  | 5 | **Backfilling** |  | 2027-01-30 | 2027-02-23 |  |  |  |  |  |  |  |  |  |  |
| SDR-2-CON-ST-ZA-3760 |  | Backfilling for Manholes | 21d | 2027-01-30 | 2027-02-23 | SDR-2-CON-ST-ZA-3680 |  |  |  |  | 0d |  | SIC- Cost [18560]; Labor [1385.27 h]; Excavator [11.95 h]; Excavator Operator [277.05 h] | 84,220.42 | Z A |
|  | 5 | **Catch basin** |  | 2026-08-16 | 2027-03-07 |  |  |  |  |  |  |  |  |  |  |
|  | 1 | **Excavation** |  | 2026-08-16 | 2026-11-25 |  |  |  |  |  |  |  |  |  |  |
| SDR-2-CON-ST-ZA-6930 |  | Excavation for Catch basin Section 1 | 21d | 2026-08-16 A | 2026-11-01 | SDR-2-CON-ST-ZA-6370, SDR-2-CON-ST-ZA-6910, SDR-2-PRO-ST-M-1040 FF | 60% | 1d | 2026-11-23 | 2026-12-16 | 88d | 0d | SIC- Cost [55598.8]; Labor [323.36 h]; Excavator [12 h]; Excavator Operator [334.38 h] | 22,241.64 | Z A |
| SDR-2-CON-ST-ZA-1300 |  | Excavation for Catch basin Section 2 | 21d | 2026-10-19 A | 2026-11-25 | SDR-2-CON-ST-ZA-6930 | 10% | 21d | 2026-10-27 | 2026-11-19 | 88d | 0d | SIC- Cost [55598.8]; Labor [1671.88 h]; Excavator [12 h]; Excavator Operator [334.38 h] | 22,241.64 | Z A |
|  | 2 | **bedding Works** |  | 2026-10-20 | 2026-12-20 |  |  |  |  |  |  |  |  |  |  |
| SDR-2-CON-ST-ZA-3840 |  | Sand Dedding for Catch basin | 21d | 2026-10-20 A | 2026-12-20 | SDR-2-CON-ST-ZA-1300 | 10% | 21d | 2026-11-21 | 2026-12-14 | 88d | 0d | SIC- Cost [69655.4]; Labor [1194.2 h]; Excavator [6.97 h]; Excavator Operator [238.84 h] | 29,655.52 | Z A |
|  | 3 | **Install Catch basin** |  | 2026-10-22 | 2027-01-13 |  |  |  |  |  |  |  |  |  |  |
| SDR-2-CON-ST-ZA-3900 |  | Install Catch basin | 21d | 2026-10-22 A | 2027-01-13 | SDR-2-CON-RW-ZA-2740, SDR-2-CON-ST-ZA-3840 | 10% | 21d | 2026-12-15 | 2027-01-07 | 88d | 13d | SIC- Cost [69655.4]; Labor [955.36 h]; Excavator [20 h]; Excavator Operator [191.07 h] | 133,449.82 | Z A |

| ID | WBS | Activity | Duration | Start | Finish | Predecessors | Complete | Remaining | Planned start | Planned finish | Total float | Free float | Resources | Cost | ZONE A |
| --- | --- | --- | --- | --- | --- | --- | --- | --- | --- | --- | --- | --- | --- | --- | --- |
|  | 4 | **Testing** |  | 2027-01-05 | 2027-01-28 |  |  |  |  |  |  |  |  |  |  |
| SDR-2-CON-ST-ZA-3960 |  | Testing for Catch basin pipe | 21d | 2027-01-05 | 2027-01-28 | SDR-2-CON-ST-ZA-3900 SS, SDR-2-MILS-1100 |  |  |  |  | 75d | 0d | SIC- Cost [69655.4]; Labor [716.52 h]; Excavator [6 h]; Excavator Operator [143.3 h] | 29,655.52 | Z A |
|  | 5 | **Backfilling** |  | 2027-01-05 | 2027-03-07 |  |  |  |  |  |  |  |  |  |  |
| SDR-2-CON-ST-ZA-6940 |  | Backfilling for Catch basin Section 1 | 11d | 2027-01-05 | 2027-01-17 | SDR-2-CON-ST-ZA-3960 SS |  |  |  |  | 85d | 42d | SIC- Cost [69655.4]; Labor [123.27 h]; Excavator [9.33 h]; Excavator Operator [81.79 h] | 29,655.42 | Z A |
| SDR-2-CON-ST-ZA-4020 |  | Backfilling for Catch basin Section 2 | 10d | 2027-02-24 | 2027-03-07 | SDR-2-CON-ST-ZA-6940 SS, SDR-2-CON-RW-ZG-2210 SS |  |  |  |  | 52d | 0d | SIC- Cost [69655.4]; Labor [82.96 h]; Excavator [40 h]; Excavator Operator [61.63 h] | 29,655.42 | Z A |
|  | 12 | **STORM WATER LINE IN ( PH2-A-MCD0 )** |  | 2026-06-01 | 2027-04-27 |  |  |  |  |  |  |  |  |  |  |
|  | 8 | **Pipes Works** |  | 2026-06-08 | 2026-12-20 |  |  |  |  |  |  |  |  |  |  |
|  | 1 | **Excavation** |  | 2026-06-08 | 2026-07-14 |  |  |  |  |  |  |  |  |  |  |
| SDR-2-CON-ST-ZA-6950 |  | Excavation for GRP Pipes Section 1 | 21d | 2026-06-08 A | 2026-06-15 A | SDR-2-CON-ST-ZA-6900 SS+3d | 100% |  | 2026-07-15 | 2026-08-08 |  |  | SIC- Cost; Labor [95.54 h]; Plumber [95.54 h]; Excavator; Excavator Operator [95.54 h] | 43,188.13 | Z A |
| SDR-2-CON-ST-ZA-6390 |  | Excavation for GRP Pipes Section 2 | 21d | 2026-06-15 A | 2026-06-22 A | SDR-2-CON-ST-ZA-6950 | 100% |  | 2026-08-09 | 2026-09-01 |  |  | SIC- Cost; Labor [95.54 h]; Plumber [95.54 h]; Excavator; Excavator Operator [95.54 h] | 43,188.13 | Z A |
| SDR-2-CON-ST-ZA-4030 |  | Excavation for GRP Pipes Section 3 | 21d | 2026-06-22 A | 2026-07-14 A | SDR-2-CON-ST-ZA-6390 | 100% |  | 2026-09-02 | 2026-09-27 |  |  | SIC- Cost; Labor [95.54 h]; Plumber [95.54 h]; Excavator; Excavator Operator [95.54 h] | 43,188.13 | Z A |
|  | 7 | **bedding Works** |  | 2026-08-20 | 2026-11-01 |  |  |  |  |  |  |  |  |  |  |
| SDR-2-CON-ST-ZA-4090 |  | Sand bedding for GRP Pipes | 21d | 2026-08-20 A | 2026-11-01 | SDR-2-CON-ST-ZA-4030 FF, SDR-2-CON-ST-ZA-4030 | 80% | 1d | 2026-09-28 | 2026-10-21 | 53d | 0d | SIC- Cost; Labor [95.54 h]; Plumber [95.54 h]; Excavator [11.71 h]; Excavator Operator [95.54 h] | 32,391.09 | Z A |
|  | 2 | **Pipes Laying** |  | 2026-08-26 | 2026-11-01 |  |  |  |  |  |  |  |  |  |  |
| SDR-2-CON-ST-ZA-4040 |  | Install ST GRP Pipes | 21d | 2026-08-26 A | 2026-11-01 | SDR-2-CON-ST-ZA-4090 FF | 80% | 1d | 2026-10-22 | 2026-11-15 | 53d | 0d | Pipe Fitter [95.54 h]; SIC- Cost; Labor [95.54 h]; Plumber [95.54 h]; Excavator [11.8 h]; Excavator Operator [95.54 h] | 291,519.9 | Z A |
|  | 6 | **Testing** |  | 2026-11-02 | 2026-11-25 |  |  |  |  |  |  |  |  |  |  |
| SDR-2-CON-ST-ZA-4080 |  | Testing ST GRP Pipes | 21d | 2026-11-02 | 2026-11-25 | SDR-2-CON-ST-ZA-4040 |  |  |  |  | 53d | 0d | Pipe Fitter [95.54 h]; SIC- Cost; Labor [12.8 h]; Plumber [95.54 h]; Excavator [5 h]; Excavator Operator [95.54 h] | 64,782.22 | Z A |
|  | 3 | **Backfilling** |  | 2026-11-26 | 2026-12-20 |  |  |  |  |  |  |  |  |  |  |
| SDR-2-CON-ST-ZA-4050 |  | Backfilling ST GRP Pipes | 21d | 2026-11-26 | 2026-12-20 | SDR-2-CON-RW-ZG-1210, SDR-2-CON-ST-ZA-4080 |  |  |  |  | 53d | 45d | SIC- Cost; Labor [12.8 h]; Plumber [67.9 h]; Excavator [12 h]; Excavator Operator [67.9 h] | 129,564.4 | Z A |
|  | 4 | **Manholes** |  | 2026-06-01 | 2026-12-21 |  |  |  |  |  |  |  |  |  |  |
|  | 1 | **Excavation** |  | 2026-06-01 | 2026-08-31 |  |  |  |  |  |  |  |  |  |  |
| SDR-2-CON-ST-ZA-6960 |  | Excavation Manholes Section 1 | 21d | 2026-06-01 A | 2026-08-31 A | SDR-2-CON-ST-ZA-6950 SS | 100% |  | 2026-07-15 | 2026-08-08 |  |  | SIC- Cost [18560]; Labor [6.4 h]; Plumber [267.5 h]; Excavator [20 h]; Excavator Operator [334.38 h] | 21,055.1 | Z A |
| SDR-2-CON-ST-ZA-6400 |  | Excavation Manholes Section 2 | 21d | 2026-06-08 A | 2026-06-15 A | SDR-2-CON-ST-ZA-6960 | 100% |  | 2026-08-09 | 2026-09-01 |  |  | SIC- Cost [18560]; Labor [6.4 h]; Plumber [267.5 h]; Excavator [20 h]; Excavator Operator [334.38 h] | 21,055.1 | Z A |
| SDR-2-CON-ST-ZA-4060 |  | Excavation Manholes Section 3 | 21d | 2026-07-13 A | 2026-07-20 A | SDR-2-CON-ST-ZA-6400 | 100% |  | 2026-09-02 | 2026-09-27 |  |  | SIC- Cost [18560]; Labor [6.4 h]; Plumber [267.5 h]; Excavator [20 h]; Excavator Operator [334.38 h] | 21,055.1 | Z A |

| ID | WBS | Activity | Duration | Start | Finish | Predecessors | Complete | Remaining | Planned start | Planned finish | Total float | Free float | Resources | Cost | ZONE A |
| --- | --- | --- | --- | --- | --- | --- | --- | --- | --- | --- | --- | --- | --- | --- | --- |
|  | 2 | **bedding Works** |  | 2026-08-27 | 2026-11-01 |  |  |  |  |  |  |  |  |  |  |
| SDR-2-CON-ST-ZA-4100 |  | Sand bedding for Manholes | 21d | 2026-08-27 A | 2026-11-01 | SDR-2-CON-ST-ZA-4060 | 75% | 0.09d | 2026-09-28 | 2026-10-21 | 99.91d | 1.91d | SIC- Cost [18560]; Labor [6.4 h]; Plumber [210.18 h]; Excavator [12 h]; Excavator Operator [262.72 h] | 42,110.21 | Z A |
|  | 3 | **Install Manholes** |  | 2026-08-30 | 2026-11-02 |  |  |  |  |  |  |  |  |  |  |
| SDR-2-CON-ST-ZA-4110 |  | Manholes Installation | 21d | 2026-08-30 A | 2026-11-02 | SDR-2-CON-ST-ZA-4100 FF | 75% | 2d | 2026-10-22 | 2026-11-15 | 98d | 0d | SIC- Cost [18560]; Plumbing Helper [115.59 h]; Labor [6.4 h]; Plumber [115.59 h]; Excavator [10.42 h]; Excavator Operator [106.92 h] | 189,495.94 | Z A |
|  | 4 | **Testing** |  | 2026-11-03 | 2026-11-26 |  |  |  |  |  |  |  |  |  |  |
| SDR-2-CON-ST-ZA-4120 |  | Testing for Manholes | 21d | 2026-11-03 | 2026-11-26 | SDR-2-CON-ST-ZA-4110 |  |  |  |  | 99d | 0d | Pipe Fitter [133.75 h]; SIC- Cost [18560]; Labor [6.4 h]; Plumber [133.75 h]; Excavator [5 h]; Excavator Operator [167.19 h] | 42,110.87 | Z A |
|  | 5 | **Backfilling** |  | 2026-11-28 | 2026-12-21 |  |  |  |  |  |  |  |  |  |  |
| SDR-2-CON-ST-ZA-4130 |  | Backfilling for Manholes | 21d | 2026-11-28 | 2026-12-21 | SDR-2-CON-ST-ZA-4120 |  |  |  |  | 99d | 37d | SIC- Cost [18560]; Labor [6.4 h]; Plumber [248.39 h]; Excavator [12 h]; Excavator Operator [310.49 h] | 84,220.42 | Z A |
|  | 5 | **Catch basin** |  | 2026-08-16 | 2027-04-27 |  |  |  |  |  |  |  |  |  |  |
|  | 1 | **Excavation** |  | 2026-08-16 | 2026-12-19 |  |  |  |  |  |  |  |  |  |  |
| SDR-2-CON-ST-ZA-6970 |  | Excavation for Catch basin Section 1 | 21d | 2026-08-16 A | 2026-11-02 | SDR-2-CON-ST-ZA-4110 FF | 50% | 1d | 2026-11-16 | 2026-12-09 | 98d | 0d | SIC- Cost [55598.8]; Dump Truck [400 h]; Loader [80 h]; Labor [19.2 h]; Plumber [115.59 h]; Excavator [13 h]; Excavator Operator [12.52 h]; Grader [500 h] | 14,827.76 | Z A |
| SDR-2-CON-ST-ZA-6410 |  | Excavation for Catch basin Section 2 | 21d | 2026-11-03 | 2026-11-26 | SDR-2-CON-ST-ZA-6970 |  |  |  |  | 98d | 0d | SIC- Cost [55598.8]; Dump Truck [400 h]; Loader [80 h]; Labor [19.2 h]; Plumber [115.59 h]; Excavator [13 h]; Excavator Operator [12.52 h]; Grader [500 h] | 14,827.76 | Z A |
| SDR-2-CON-ST-ZA-4070 |  | Excavation for Catch basin Section 3 | 19d | 2026-11-28 | 2026-12-19 | SDR-2-CON-ST-ZA-6410 |  |  |  |  | 98d | 25d | SIC- Cost [55598.8]; Dump Truck [400 h]; Loader [162.11 h]; Labor [19.2 h]; Plumber [286.61 h]; Excavator [13 h]; Excavator Operator [358.26 h]; Grader [120 h] | 14,827.78 | Z A |
|  | 2 | **bedding Works** |  | 2027-01-18 | 2027-02-10 |  |  |  |  |  |  |  |  |  |  |
| SDR-2-CON-ST-ZA-4140 |  | Sand Dedding for Catch basin | 21d | 2027-01-18 | 2027-02-10 | SDR-2-CON-CC-ZG-1620, SDR-2-CON-ST-ZA-4070 |  |  |  |  | 73d | 0d | SIC- Cost [69655.4]; Labor [25.6 h]; Plumber [238.84 h]; Excavator [12 h]; Excavator Operator [298.55 h]; Dumper Truck [251.25 h]; Loader [268.55 h] | 29,655.52 | Z A |
|  | 3 | **Install Catch basin** |  | 2027-02-11 | 2027-03-08 |  |  |  |  |  |  |  |  |  |  |
| SDR-2-CON-ST-ZA-4150 |  | Install Catch basin | 21d | 2027-02-11 | 2027-03-08 | SDR-2-CON-ST-ZA-4140, SDR-2-CON-ST-ZA-4050 |  |  |  |  | 73d | 19d | SIC- Cost [69655.4]; Plumbing Helper [191.07 h]; Labor [25.6 h]; Plumber [191.07 h]; Excavator [20 h]; Excavator Operator [238.84 h] | 133,449.82 | Z A |
|  | 4 | **Testing** |  | 2027-04-05 | 2027-04-15 |  |  |  |  |  |  |  |  |  |  |
| SDR-2-CON-ST-ZA-4160 |  | Testing for Catch basin pipe | 10d | 2027-04-05 | 2027-04-15 | SDR-2-CON-RW-ZG-1310, SDR-2-CON-ST-ZA-4150 |  |  |  |  | 54d | 0d | SIC- Cost [69655.4]; Plumbing Helper [143.3 h]; Labor [25.6 h]; Plumber [83.12 h]; Excavator [5 h]; Excavator Operator [58.2 h] | 29,655.52 | Z A |
|  | 5 | **Backfilling** |  | 2027-04-17 | 2027-04-27 |  |  |  |  |  |  |  |  |  |  |
| SDR-2-CON-ST-ZA-4170 |  | Backfilling for Catch basin | 10d | 2027-04-17 | 2027-04-27 | SDR-2-CON-ST-ZA-4160 |  |  |  |  | 54d | 0d | SIC- Cost [69655.4]; Labor [25.6 h]; Plumber [40.13 h]; Excavator [8.96 h]; Excavator Operator [66.76 h] | 59,310.84 | Z A |
|  | 13 | **STORM WATER LINE IN ( PH2-A-MCE0 )** |  | 2026-07-01 | 2027-04-11 |  |  |  |  |  |  |  |  |  |  |
|  | 8 | **Pipes Works** |  | 2026-07-01 | 2026-12-20 |  |  |  |  |  |  |  |  |  |  |
|  | 1 | **Excavation** |  | 2026-07-01 | 2026-07-20 |  |  |  |  |  |  |  |  |  |  |
| SDR-2-CON-ST-ZA-6980 |  | Excavation for GRP Pipes Section 1 | 21d | 2026-07-01 A | 2026-07-09 A | SDR-2-CON-ST-ZA-6950 SS+5d, SDR-2-PRO-DEL-E-1040, SDR-2-PRO-DEL-E-1000 | 100% |  | 2026-07-27 | 2026-08-19 |  |  | SIC- Cost; Labor [44.81 h]; Plumber [95.54 h]; Excavator [20 h]; Excavator Operator [95.54 h] | 24,457.3 | Z A |
| SDR-2-CON-ST-ZA-6420 |  | Excavation for GRP Pipes Section 2 | 21d | 2026-07-09 A | 2026-07-12 A | SDR-2-CON-ST-ZA-6980, SDR-2-PRO-DES-C-1070 | 100% |  | 2026-08-20 | 2026-09-13 |  |  | SIC- Cost; Labor [44.81 h]; Plumber [95.54 h]; Excavator [20 h]; Excavator Operator [95.54 h] | 24,457.3 | Z A |
| SDR-2-CON-ST-ZA-4180 |  | Excavation for GRP Pipes Section 3 | 21d | 2026-07-13 A | 2026-07-20 A | SDR-2-CON-ST-ZA-6420 FS+4d | 100% |  | 2026-09-19 | 2026-10-13 |  |  | SIC- Cost; Labor [44.81 h]; Plumber [95.54 h]; Excavator [20 h]; Excavator Operator [95.54 h] | 24,457.3 | Z A |

| ID | WBS | Activity | Duration | Start | Finish | Predecessors | Complete | Remaining | Planned start | Planned finish | Total float | Free float | Resources | Cost | ZONE A |
| --- | --- | --- | --- | --- | --- | --- | --- | --- | --- | --- | --- | --- | --- | --- | --- |
|  | 7 | **bedding Works** |  | 2026-08-20 | 2026-11-01 |  |  |  |  |  |  |  |  |  |  |
| SDR-2-CON-ST-ZA-4240 |  | Sand bedding for GRP Pipes | 21d | 2026-08-20 A | 2026-11-01 | SDR-2-CON-ST-ZA-4180 | 50% | 1d | 2026-10-14 | 2026-11-07 | 62d | 0d | SIC- Cost; Labor [44.81 h]; Plumber [95.54 h]; Excavator [10 h]; Excavator Operator [40.74 h]; Dumper Truck [30 h]; Loader [25.71 h] | 18,342.99 | Z A |
|  | 2 | **Pipes Laying** |  | 2026-08-27 | 2026-11-01 |  |  |  |  |  |  |  |  |  |  |
| SDR-2-CON-ST-ZA-4190 |  | Install ST GRP Pipes | 21d | 2026-08-27 A | 2026-11-01 | SDR-2-CON-ST-ZA-4240 FF, SDR-2-PRO-ST-M-1020 FF | 70% | 0.9d | 2026-11-08 | 2026-12-01 | 62d | 0d | Pipe Fitter [67.9 h]; SIC- Cost; Labor [51.21 h]; Plumber [67.9 h]; Excavator [10 h]; Excavator Operator [67.9 h] | 165,086.78 | Z A |
|  | 6 | **Testing** |  | 2026-11-02 | 2026-11-25 |  |  |  |  |  |  |  |  |  |  |
| SDR-2-CON-ST-ZA-4230 |  | Testing ST GRP Pipes | 21d | 2026-11-02 | 2026-11-25 | SDR-2-CON-ST-ZA-4190 |  |  |  |  | 62d | 0d | SIC- Cost; Plumbing Helper [40.74 h]; Labor [12.8 h]; Plumber [40.74 h]; Excavator [10 h]; Excavator Operator [40.74 h] | 36,685.97 | Z A |
|  | 3 | **Backfilling** |  | 2026-11-26 | 2026-12-20 |  |  |  |  |  |  |  |  |  |  |
| SDR-2-CON-ST-ZA-4200 |  | Backfilling ST GRP Pipes | 21d | 2026-11-26 | 2026-12-20 | SDR-2-CON-ST-ZA-4230 |  |  |  |  | 62d | 57d | SIC- Cost [9218]; Labor [1926.46 h]; Plumber [334.38 h]; Excavator [10 h]; Excavator Operator [417.97 h] | 73,371.9 | Z A |
|  | 4 | **Manholes** |  | 2026-07-01 | 2026-12-20 |  |  |  |  |  |  |  |  |  |  |
|  | 1 | **Excavation** |  | 2026-07-01 | 2026-08-31 |  |  |  |  |  |  |  |  |  |  |
| SDR-2-CON-ST-ZA-6990 |  | Excavation Manholes Section 1 | 21d | 2026-07-01 A | 2026-08-31 A | SDR-2-CON-ST-ZA-6980 SS | 100% |  | 2026-07-27 | 2026-08-19 |  |  | SIC- Cost [18550]; Labor [6.4 h]; Plumber [238.84 h]; Excavator [30.89 h]; Excavator Operator [298.55 h] | 21,055.1 | Z A |
| SDR-2-CON-ST-ZA-6430 |  | Excavation Manholes Section 2 | 21d | 2026-07-13 A | 2026-07-20 A | SDR-2-CON-ST-ZA-6990 | 100% |  | 2026-08-20 | 2026-09-13 |  |  | SIC- Cost [18550]; Labor [6.4 h]; Plumber [238.84 h]; Excavator [30.89 h]; Excavator Operator [298.55 h] | 21,055.1 | Z A |
| SDR-2-CON-ST-ZA-4210 |  | Excavation Manholes Section 3 | 21d | 2026-07-20 A | 2026-08-01 A | SDR-2-CON-ST-ZA-6430 FS+3d | 100% |  | 2026-09-17 | 2026-10-12 |  |  | SIC- Cost [18550]; Labor [6.4 h]; Plumber [238.84 h]; Excavator [30.89 h]; Excavator Operator [298.55 h] | 21,055.1 | Z A |
|  | 2 | **bedding Works** |  | 2026-08-20 | 2026-11-01 |  |  |  |  |  |  |  |  |  |  |
| SDR-2-CON-ST-ZA-4250 |  | Sand bedding for Manholes | 21d | 2026-08-20 A | 2026-11-01 | SDR-2-CON-ST-ZA-4210 | 50% | 1d | 2026-10-13 | 2026-11-05 | 86d | 0d | SIC- Cost; Labor [6.4 h]; Plumber [94.4 h]; Excavator [13.26 h]; Excavator Operator [13.49 h]; Dumper Truck [150 h]; Loader [20 h] | 42,110.21 | Z A |
|  | 3 | **Install Manholes** |  | 2026-08-27 | 2026-11-01 |  |  |  |  |  |  |  |  |  |  |
| SDR-2-CON-ST-ZA-4260 |  | Manholes Installation | 21d | 2026-08-27 A | 2026-11-01 | SDR-2-CON-ST-ZA-4250 FF | 50% | 0.1d | 2026-11-07 | 2026-11-30 | 86d | 0d | SIC- Cost [18560]; Plumbing Helper [181.52 h]; Labor [6.4 h]; Plumber [181.52 h]; Excavator [13.05 h]; Excavator Operator [226.9 h] | 189,495.94 | Z A |
|  | 4 | **Testing** |  | 2026-11-02 | 2026-11-25 |  |  |  |  |  |  |  |  |  |  |
| SDR-2-CON-ST-ZA-4270 |  | Testing for Manholes | 21d | 2026-11-02 | 2026-11-25 | SDR-2-CON-ST-ZA-4260 |  |  |  |  | 86d | 0d | SIC- Cost [18560]; Plumbing Helper [152.86 h]; Labor [6.4 h]; Plumber [152.86 h]; Excavator [6 h]; Excavator Operator [6.03 h] | 42,110.87 | Z A |
|  | 5 | **Backfilling** |  | 2026-11-26 | 2026-12-20 |  |  |  |  |  |  |  |  |  |  |
| SDR-2-CON-ST-ZA-4280 |  | Backfilling for Manholes | 21d | 2026-11-26 | 2026-12-20 | SDR-2-CON-ST-ZA-4270 |  |  |  |  | 86d | 69d | SIC- Cost [18560]; Dump Truck [350 h]; Loader [80 h]; Labor [6.4 h]; Plumber [210.18 h]; Excavator [11.14 h]; Excavator Operator [262.72 h]; Grader [120 h] | 84,220.42 | Z A |
|  | 5 | **Catch basin** |  | 2026-08-16 | 2027-04-11 |  |  |  |  |  |  |  |  |  |  |
|  | 1 | **Excavation** |  | 2026-08-16 | 2026-10-15 |  |  |  |  |  |  |  |  |  |  |
| SDR-2-CON-ST-ZA-6440 |  | Excavation for Catch basin Section 1 | 21d | 2026-08-16 A | 2026-10-06 A | SDR-2-CON-ST-ZA-4260 FF | 100% |  | 2026-12-01 | 2026-12-24 |  |  | SIC- Cost [55598.8]; Labor [19.2 h]; Plumber [286.61 h]; Excavator [15 h]; Excavator Operator [14.45 h] | 22,241.64 | Z A |
| SDR-2-CON-ST-ZA-4220 |  | Excavation for Catch basin Section 2 | 21d | 2026-09-17 A | 2026-10-15 A | SDR-2-CON-ST-ZA-6440 FS+7d | 100% |  | 2026-10-17 | 2026-11-09 |  |  | SIC- Cost [55598.8]; Labor [1926.46 h]; Plumber [286.61 h]; Excavator [15 h]; Excavator Operator [358.26 h] | 22,241.64 | Z A |

| ID | WBS | Activity | Duration | Start | Finish | Predecessors | Complete | Remaining | Planned start | Planned finish | Total float | Free float | Resources | Cost | ZONE A |
| --- | --- | --- | --- | --- | --- | --- | --- | --- | --- | --- | --- | --- | --- | --- | --- |
|  | 2 | **bedding Works** |  | 2026-10-07 | 2027-02-10 |  |  |  |  |  |  |  |  |  |  |
| SDR-2-CON-ST-ZA-4290 |  | Sand Dedding for Catch basin | 21d | 2026-10-07 A | 2027-02-10 | SDR-2-CON-CC-ZG-1620, SDR-2-CON-ST-ZA-4220 | 70% | 21d | 2026-12-29 | 2027-01-21 | 28d | 0d | SIC- Cost [69655.4]; Labor [25.6 h]; Plumber [152.86 h]; Excavator [9.43 h]; Excavator Operator [191.07 h]; Dumper Truck [165.71 h]; Loader [292.18 h] | 29,655.52 | Z A |
|  | 3 | **Install Catch basin** |  | 2026-10-07 | 2027-03-08 |  |  |  |  |  |  |  |  |  |  |
| SDR-2-CON-ST-ZA-4300 |  | Install Catch basin | 21d | 2026-10-07 A | 2027-03-08 | SDR-2-CON-ST-ZA-4290 | 70% | 21d | 2027-01-23 | 2027-02-15 | 28d | 0d | SIC- Cost [69655.4]; Plumbing Helper [171.96 h]; Labor [25.6 h]; Plumber [171.96 h]; Excavator [10.75 h]; Excavator Operator [214.96 h] | 133,449.82 | Z A |
|  | 4 | **Testing** |  | 2027-03-20 | 2027-03-30 |  |  |  |  |  |  |  |  |  |  |
| SDR-2-CON-ST-ZA-4310 |  | Testing for Catch basin pipe | 10d | 2027-03-20 | 2027-03-30 | SDR-2-CON-ST-ZA-4300 FS+5d |  |  |  |  | 28d | 0d | SIC- Cost [69655.4]; Plumbing Helper [143.3 h]; Labor [25.6 h]; Plumber [83.12 h]; Excavator [10.4 h]; Excavator Operator [68.28 h] | 29,655.52 | Z A |
|  | 5 | **Backfilling** |  | 2027-03-31 | 2027-04-11 |  |  |  |  |  |  |  |  |  |  |
| SDR-2-CON-ST-ZA-4320 |  | Backfilling for Catch basin | 10d | 2027-03-31 | 2027-04-11 | SDR-2-CON-ST-ZA-3960, SDR-2-CON-ST-ZA-4310, SDR-2-CON-ST-ZA-4280, SDR-2-CON-ST-ZA-4130, SDR-2-CON-ST-ZA-3760 |  |  |  |  | 28d | 25d | SIC- Cost [69655.4]; Labor [1086.35 h]; Plumber [40.13 h]; Excavator [6 h]; Excavator Operator [68.52 h] | 59,310.84 | Z A |
|  | 14 | **STORM WATER LINE IN ( PH2-A-MCF0 )** |  | 2026-06-22 | 2027-04-13 |  |  |  |  |  |  |  |  |  |  |
|  | 8 | **Pipes Works** |  | 2026-06-22 | 2027-01-12 |  |  |  |  |  |  |  |  |  |  |
|  | 1 | **Excavation** |  | 2026-06-22 | 2026-07-13 |  |  |  |  |  |  |  |  |  |  |
| SDR-2-CON-ST-ZA-7000 |  | Excavation for GRP Pipes Section 1 | 21d | 2026-06-22 A | 2026-06-30 A | SDR-2-CON-ST-ZA-6980 SS+4d, SDR-2-PRO-DEL-E-1050, SDR-2-PRO-DEL-E-1130 SS | 100% |  | 2026-08-01 | 2026-08-24 |  |  | SIC- Cost; Labor [44.81 h]; Plumber [95.54 h]; Excavator [20 h]; Excavator Operator [95.54 h] | 24,457.3 | Z A |
| SDR-2-CON-ST-ZA-6450 |  | Excavation for GRP Pipes Section 2 | 21d | 2026-06-30 A | 2026-07-06 A | SDR-2-CON-ST-ZA-7000 | 100% |  | 2026-08-25 | 2026-09-17 |  |  | SIC- Cost; Labor [44.81 h]; Plumber [95.54 h]; Excavator [20 h]; Excavator Operator [95.54 h] | 24,457.3 | Z A |
| SDR-2-CON-ST-ZA-4330 |  | Excavation for GRP Pipes Section 3 | 21d | 2026-07-06 A | 2026-07-13 A | SDR-2-CON-ST-ZA-6450 | 100% |  | 2026-09-19 | 2026-10-13 |  |  | SIC- Cost; Labor [44.81 h]; Plumber [95.54 h]; Excavator [20 h]; Excavator Operator [95.54 h] | 24,457.3 | Z A |
|  | 7 | **bedding Works** |  | 2026-09-21 | 2026-11-24 |  |  |  |  |  |  |  |  |  |  |
| SDR-2-CON-ST-ZA-4390 |  | Sand bedding for GRP Pipes | 21d | 2026-09-21 A | 2026-11-24 | SDR-2-CON-ST-ZA-4330 | 50% | 21d | 2026-10-26 | 2026-11-18 | 31d | 0d | SIC- Cost; Labor [44.81 h]; Plumber [95.54 h]; Excavator [13.03 h]; Excavator Operator [95.54 h]; Dumper Truck [100 h]; Loader [53.33 h] | 18,342.99 | Z A |
|  | 2 | **Pipes Laying** |  | 2026-10-01 | 2026-11-24 |  |  |  |  |  |  |  |  |  |  |
| SDR-2-CON-ST-ZA-4340 |  | Install ST GRP Pipes | 21d | 2026-10-01 A | 2026-11-24 | SDR-2-CON-ST-ZA-4390 FF | 50% | 12.9d | 2026-11-08 | 2026-12-01 | 31d | 0d | Pipe Fitter [95.54 h]; SIC- Cost; Labor [51.21 h]; Plumber [95.54 h]; Excavator [8.3 h]; Excavator Operator [8.05 h] | 165,086.78 | Z A |
|  | 6 | **Testing** |  | 2026-11-25 | 2026-12-19 |  |  |  |  |  |  |  |  |  |  |
| SDR-2-CON-ST-ZA-4380 |  | Testing ST GRP Pipes | 21d | 2026-11-25 | 2026-12-19 | SDR-2-CON-ST-ZA-4340 |  |  |  |  | 31d | 0d | SIC- Cost; Plumbing Helper [40.74 h]; Labor [12.8 h]; Plumber [40.74 h]; Excavator [21.35 h]; Excavator Operator [40.74 h] | 36,685.97 | Z A |
|  | 3 | **Backfilling** |  | 2026-12-20 | 2027-01-12 |  |  |  |  |  |  |  |  |  |  |
| SDR-2-CON-ST-ZA-4350 |  | Backfilling ST GRP Pipes | 21d | 2026-12-20 | 2027-01-12 | SDR-2-CON-ST-ZA-4380 |  |  |  |  | 31d | 19d | SIC- Cost; Labor [1926.46 h]; Plumber [40.74 h]; Excavator [30 h]; Excavator Operator [40.74 h] | 73,371.9 | Z A |
|  | 4 | **Manholes** |  | 2026-06-30 | 2027-02-07 |  |  |  |  |  |  |  |  |  |  |
|  | 1 | **Excavation** |  | 2026-06-30 | 2026-11-01 |  |  |  |  |  |  |  |  |  |  |
| SDR-2-CON-ST-ZA-6460 |  | Excavation Manholes Section 1 | 21d | 2026-06-30 A | 2026-08-31 A | SDR-2-CON-ST-ZA-7000 SS | 100% |  | 2026-08-01 | 2026-08-24 |  |  | SIC- Cost [18560]; Labor [6.4 h]; Plumber [238.84 h]; Excavator [20 h]; Excavator Operator [298.55 h] | 31,582.66 | Z A |
| SDR-2-CON-ST-ZA-4360 |  | Excavation Manholes Section 2 | 21d | 2026-07-06 A | 2026-11-01 | SDR-2-CON-ST-ZA-6460 | 50% | 1d | 2026-08-25 | 2026-09-17 | 5d | 0d | SIC- Cost [18560]; Labor [6.4 h]; Plumber [238.84 h]; Excavator [20 h]; Excavator Operator [298.55 h] | 31,582.66 | Z A |

| ID | WBS | Activity | Duration | Start | Finish | Predecessors | Complete | Remaining | Planned start | Planned finish | Total float | Free float | Resources | Cost | ZONE A |
| --- | --- | --- | --- | --- | --- | --- | --- | --- | --- | --- | --- | --- | --- | --- | --- |
|  | 2 | **bedding Works** |  | 2026-10-08 | 2026-11-25 |  |  |  |  |  |  |  |  |  |  |
| SDR-2-CON-ST-ZA-4400 |  | Sand bedding for Manholes | 21d | 2026-10-08 A | 2026-11-25 | SDR-2-CON-ST-ZA-4360 | 50% | 21d | 2026-10-13 | 2026-11-05 | 5d | 0d | SIC- Cost [18560]; Labor [6.4 h]; Plumber [191.07 h]; Excavator [12 h]; Excavator Operator [238.84 h]; Dumper Truck [163.33 h]; Loader [46.37 h] | 42,110.21 | Z A |
|  | 3 | **Install Manholes** |  | 2026-10-08 | 2026-12-20 |  |  |  |  |  |  |  |  |  |  |
| SDR-2-CON-ST-ZA-4410 |  | Manholes Installation | 21d | 2026-10-08 A | 2026-12-20 | SDR-2-CON-ST-ZA-4400 | 50% | 21d | 2026-11-07 | 2026-11-30 | 5d | 0d | SIC- Cost [18560]; Plumbing Helper [152.86 h]; Labor [6.4 h]; Plumber [152.86 h]; Excavator [11.14 h]; Excavator Operator [11.06 h] | 189,495.94 | Z A |
|  | 4 | **Testing** |  | 2026-12-21 | 2027-01-13 |  |  |  |  |  |  |  |  |  |  |
| SDR-2-CON-ST-ZA-4420 |  | Testing for Manholes | 21d | 2026-12-21 | 2027-01-13 | SDR-2-CON-ST-ZA-4410 |  |  |  |  | 5d | 0d | SIC- Cost; Plumbing Helper [57.79 h]; Labor [6.4 h]; Plumber [57.79 h]; Excavator [6 h]; Excavator Operator [5.78 h] | 42,110.87 | Z A |
|  | 5 | **Backfilling** |  | 2027-01-14 | 2027-02-07 |  |  |  |  |  |  |  |  |  |  |
| SDR-2-CON-ST-ZA-4430 |  | Backfilling for Manholes | 21d | 2027-01-14 | 2027-02-07 | SDR-2-CON-ST-ZA-4420 |  |  |  |  | 5d | 0d | SIC- Cost [18560]; Labor [678.97 h]; Plumber [678.97 h]; Excavator [15.3 h]; Excavator Operator [2987.46 h] | 84,220.42 | Z A |
|  | 5 | **Catch basin** |  | 2026-08-16 | 2027-04-13 |  |  |  |  |  |  |  |  |  |  |
|  | 1 | **Excavation** |  | 2026-08-16 | 2026-10-25 |  |  |  |  |  |  |  |  |  |  |
| SDR-2-CON-ST-ZA-6470 |  | Excavation for Catch basin Section 1 | 21d | 2026-08-16 A | 2026-10-06 A | SDR-2-CON-ST-ZA-4410 FF | 100% |  | 2026-11-08 | 2026-12-01 |  |  | SIC- Cost; Labor [19.2 h]; Plumber [57.79 h]; Excavator [10 h]; Excavator Operator [9.63 h] | 22,241.64 | Z A |
| SDR-2-CON-ST-ZA-4370 |  | Excavation for Catch basin Section 2 | 21d | 2026-09-17 A | 2026-10-25 A | SDR-2-CON-ST-ZA-6470 | 100% |  | 2026-12-01 | 2026-12-24 |  |  | SIC- Cost [55598.8]; Labor [19.2 h]; Plumber [305.71 h]; Excavator [10 h]; Excavator Operator [382.14 h] | 22,241.64 | Z A |
|  | 2 | **bedding Works** |  | 2026-10-07 | 2027-01-13 |  |  |  |  |  |  |  |  |  |  |
| SDR-2-CON-ST-ZA-4440 |  | Sand Dedding for Catch basin | 21d | 2026-10-07 A | 2027-01-13 | SDR-2-CON-RW-ZG-2110, SDR-2-CON-ST-ZA-4370 | 65% | 21d | 2026-12-26 | 2027-01-18 | 26d | 0d | SIC- Cost [69655.4]; Labor [25.6 h]; Plumber [171.96 h]; Excavator [10 h]; Excavator Operator [214.96 h]; Dumper Truck [225 h]; Loader [40 h] | 29,655.52 | Z A |
|  | 3 | **Install Catch basin** |  | 2026-10-07 | 2027-02-07 |  |  |  |  |  |  |  |  |  |  |
| SDR-2-CON-ST-ZA-4450 |  | Install Catch basin | 21d | 2026-10-07 A | 2027-02-07 | SDR-2-CON-ST-ZA-4440 | 65% | 21d | 2027-01-19 | 2027-02-11 | 26d | 0d | SIC- Cost [69655.4]; Plumbing Helper [191.07 h]; Labor [25.6 h]; Plumber [191.07 h]; Excavator [10 h]; Excavator Operator [238.84 h] | 133,449.82 | Z A |
|  | 4 | **Testing** |  | 2027-02-08 | 2027-03-04 |  |  |  |  |  |  |  |  |  |  |
| SDR-2-CON-ST-ZA-4460 |  | Testing for Catch basin pipe | 21d | 2027-02-08 | 2027-03-04 | SDR-2-CON-ST-ZA-4450 |  |  |  |  | 26d | 0d | SIC- Cost [69655.4]; Plumbing Helper [114.64 h]; Labor [25.6 h]; Plumber [114.64 h]; Excavator [10 h]; Excavator Operator [143.3 h] | 29,655.52 | Z A |
|  | 5 | **Backfilling** |  | 2027-03-06 | 2027-04-13 |  |  |  |  |  |  |  |  |  |  |
| SDR-2-CON-ST-ZA-7010 |  | Backfilling for Catch basin Section 1 | 15d | 2027-03-06 | 2027-03-27 | SDR-2-CON-ST-ZA-4460 |  |  |  |  | 26d | 0d | SIC- Cost [69655.4]; Labor [784.02 h]; Plumber [784.02 h]; Excavator [12.23 h]; Excavator Operator [794.1 h] | 29,655.42 | Z A |
| SDR-2-CON-ST-ZA-4470 |  | Backfilling for Catch basin Section 2 | 15d | 2027-03-28 | 2027-04-13 | SDR-2-CON-ST-ZA-7010, SDR-2-CON-RW-ZG-2210 |  |  |  |  | 26d | 23d | SIC- Cost [69655.4]; Labor [108.83 h]; Plumber [40.13 h]; Excavator [8 h]; Excavator Operator [68.52 h] | 29,655.42 | Z A |
|  | 15 | **STORM WATER LINE IN ( PH2-A-MCG0 )** |  | 2026-07-01 | 2027-05-03 |  |  |  |  |  |  |  |  |  |  |
|  | 8 | **Pipes Works** |  | 2026-07-01 | 2027-02-06 |  |  |  |  |  |  |  |  |  |  |
|  | 1 | **Excavation** |  | 2026-07-01 | 2026-07-20 |  |  |  |  |  |  |  |  |  |  |
| SDR-2-CON-ST-ZA-6480 |  | Excavation for GRP Pipes Section 1 | 21d | 2026-07-01 A | 2026-07-11 A | SDR-2-CON-ST-ZA-7000 SS+4d, SDR-2-PRO-DES-E-1020 SS | 100% |  | 2026-08-06 | 2026-08-30 |  |  | SIC- Cost; Labor [44.81 h]; Plumber [95.54 h]; Excavator [20 h]; Excavator Operator [95.54 h] | 47,017.28 | Z A |
| SDR-2-CON-ST-ZA-4480 |  | Excavation for GRP Pipes Section 2 | 21d | 2026-07-12 A | 2026-07-20 A | SDR-2-CON-ST-ZA-6480 | 100% |  | 2026-08-31 | 2026-09-24 |  |  | SIC- Cost; Labor [44.81 h]; Plumber [95.54 h]; Excavator [20 h]; Excavator Operator [95.54 h] | 47,017.28 | Z A |

| ID | WBS | Activity | Duration | Start | Finish | Predecessors | Complete | Remaining | Planned start | Planned finish | Total float | Free float | Resources | Cost | ZONE A |
| --- | --- | --- | --- | --- | --- | --- | --- | --- | --- | --- | --- | --- | --- | --- | --- |
|  | 7 | **bedding Works** |  | 2026-10-08 | 2026-11-24 |  |  |  |  |  |  |  |  |  |  |
| SDR-2-CON-ST-ZA-4540 |  | Sand bedding for GRP Pipes | 21d | 2026-10-08 A | 2026-11-24 | SDR-2-CON-ST-ZA-4480 | 70% | 21d | 2026-10-12 | 2026-11-04 | 28d | 0d | SIC- Cost; Labor [44.81 h]; Plumber [238.84 h]; Excavator; Excavator Operator [95.54 h]; Dumper Truck [100 h]; Loader [40 h] | 23,508.66 | Z A |
|  | 2 | **Pipes Laying** |  | 2026-10-08 | 2026-12-19 |  |  |  |  |  |  |  |  |  |  |
| SDR-2-CON-ST-ZA-4490 |  | Install ST GRP Pipes | 21d | 2026-10-08 A | 2026-12-19 | SDR-2-CON-ST-ZA-4540 | 70% | 21d | 2026-11-05 | 2026-11-29 | 28d | 0d | Pipe Fitter [95.54 h]; SIC- Cost; Labor [51.21 h]; Plumber [95.54 h]; Excavator [10.85 h]; Excavator Operator [10.06 h] | 211,577.73 | Z A |
|  | 6 | **Testing** |  | 2026-12-20 | 2027-01-12 |  |  |  |  |  |  |  |  |  |  |
| SDR-2-CON-ST-ZA-4530 |  | Testing ST GRP Pipes | 21d | 2026-12-20 | 2027-01-12 | SDR-2-CON-ST-ZA-4490 |  |  |  |  | 28d | 0d | SIC- Cost; Plumbing Helper [40.74 h]; Labor [12.8 h]; Plumber [67.9 h]; Excavator [10 h]; Excavator Operator [40.74 h] | 47,017.25 | Z A |
|  | 3 | **Backfilling** |  | 2027-01-13 | 2027-02-06 |  |  |  |  |  |  |  |  |  |  |
| SDR-2-CON-ST-ZA-4500 |  | Backfilling ST GRP Pipes | 21d | 2027-01-13 | 2027-02-06 | SDR-2-CON-ST-ZA-4530 |  |  |  |  | 28d | 0d | SIC- Cost; Labor [1926.46 h]; Plumber [81.48 h]; Excavator [10 h]; Excavator Operator [81.48 h] | 94,034.57 | Z A |
|  | 4 | **Manholes** |  | 2026-07-20 | 2027-02-07 |  |  |  |  |  |  |  |  |  |  |
|  | 1 | **Excavation** |  | 2026-07-20 | 2026-11-01 |  |  |  |  |  |  |  |  |  |  |
| SDR-2-CON-ST-ZA-6490 |  | Excavation Manholes Section 1 | 21d | 2026-07-20 A | 2026-08-31 A | SDR-2-CON-ST-ZA-6480 SS | 100% |  | 2026-08-06 | 2026-08-30 |  |  | SIC- Cost [18560]; Labor [6.4 h]; Plumber [334.38 h]; Excavator [20 h]; Excavator Operator [417.97 h] | 31,582.66 | Z A |
| SDR-2-CON-ST-ZA-4510 |  | Excavation Manholes Section 2 | 21d | 2026-07-29 A | 2026-11-01 | SDR-2-CON-ST-ZA-6490 FS+3d | 75% | 1d | 2026-09-03 | 2026-09-28 | 13d | 0d | SIC- Cost [18560]; Labor [6.4 h]; Plumber [334.38 h]; Excavator [20 h]; Excavator Operator [417.97 h] | 31,582.66 | Z A |
|  | 2 | **bedding Works** |  | 2026-10-07 | 2026-11-25 |  |  |  |  |  |  |  |  |  |  |
| SDR-2-CON-ST-ZA-4550 |  | Sand bedding for Manholes | 21d | 2026-10-07 A | 2026-11-25 | SDR-2-CON-ST-ZA-4510 | 50% | 21d | 2026-10-13 | 2026-11-05 | 13d | 0d | SIC- Cost [18560]; Labor [6.4 h]; Plumber [238.84 h]; Excavator [12.85 h]; Excavator Operator [298.55 h]; Dumper Truck [212.5 h]; Loader [40 h] | 42,110.21 | Z A |
|  | 3 | **Install Manholes** |  | 2026-10-08 | 2026-12-20 |  |  |  |  |  |  |  |  |  |  |
| SDR-2-CON-ST-ZA-4560 |  | Manholes Installation | 21d | 2026-10-08 A | 2026-12-20 | SDR-2-CON-ST-ZA-4550 | 50% | 21d | 2026-11-07 | 2026-11-30 | 13d | 0d | SIC- Cost [18560]; Plumbing Helper [100.57 h]; Labor [6.4 h]; Plumber [100.57 h]; Excavator [8.67 h]; Excavator Operator [8.05 h] | 189,495.94 | Z A |
|  | 4 | **Testing** |  | 2026-12-21 | 2027-01-13 |  |  |  |  |  |  |  |  |  |  |
| SDR-2-CON-ST-ZA-4570 |  | Testing for Manholes | 21d | 2026-12-21 | 2027-01-13 | SDR-2-CON-ST-ZA-4560 |  |  |  |  | 13d | 0d | SIC- Cost; Plumbing Helper [57.79 h]; Labor [6.4 h]; Plumber [57.79 h]; Excavator [6 h]; Excavator Operator [5.78 h] | 42,110.87 | Z A |
|  | 5 | **Backfilling** |  | 2027-01-14 | 2027-02-07 |  |  |  |  |  |  |  |  |  |  |
| SDR-2-CON-ST-ZA-4580 |  | Backfilling for Manholes | 21d | 2027-01-14 | 2027-02-07 | SDR-2-CON-RW-ZG-2110, SDR-2-CON-ST-ZA-4570 |  |  |  |  | 13d | 0d | SIC- Cost [18560]; Labor [6.4 h]; Plumber [286.61 h]; Excavator [13.44 h]; Excavator Operator [358.26 h] | 84,220.42 | Z A |
|  | 5 | **Catch basin** |  | 2026-08-16 | 2027-05-03 |  |  |  |  |  |  |  |  |  |  |
|  | 1 | **Excavation** |  | 2026-08-16 | 2027-01-13 |  |  |  |  |  |  |  |  |  |  |
| SDR-2-CON-ST-ZA-6500 |  | Excavation for Catch basin Section 1 | 21d | 2026-08-16 A | 2026-10-25 A | SDR-2-CON-ST-ZA-4560 FF | 100% |  | 2026-11-17 | 2026-12-10 |  |  | SIC- Cost [55598.8]; Labor [19.2 h]; Plumber [115.59 h]; Excavator [13.35 h]; Excavator Operator [13.49 h] | 22,241.64 | Z A |
| SDR-2-CON-ST-ZA-4520 |  | Excavation for Catch basin Section 2 | 21d | 2026-10-19 A | 2027-01-13 | SDR-2-CON-ST-ZA-6500 FS+5d | 25% | 21d | 2026-12-21 | 2027-01-13 | 17d | 0d | SIC- Cost [55598.8]; Labor [1926.46 h]; Plumber [334.38 h]; Excavator [13.35 h]; Excavator Operator [417.97 h] | 22,241.64 | Z A |

| ID | WBS | Activity | Duration | Start | Finish | Predecessors | Complete | Remaining | Planned start | Planned finish | Total float | Free float | Resources | Cost | ZONE A |
| --- | --- | --- | --- | --- | --- | --- | --- | --- | --- | --- | --- | --- | --- | --- | --- |
|  | 2 | **bedding Works** |  | 2026-10-20 | 2027-02-07 |  |  |  |  |  |  |  |  |  |  |
| SDR-2-CON-ST-ZA-4590 |  | Sand Bedding for Catch basin | 21d | 2026-10-20 A | 2027-02-07 | SDR-2-MILS-1100, SDR-2-CON-ST-ZA-4520 | 25% | 21d | 2027-01-14 | 2027-02-07 | 17d | 0d | SIC- Cost [69655.4]; Labor [678.97 h]; Plumber [678.97 h]; Excavator [7.09 h]; Excavator Operator [1513.17 h]; Dumper Truck [182.6 h]; Loader [58.46 h] | 29,655.52 | Z A |
|  | 3 | **Install Catch basin** |  | 2026-10-20 | 2027-03-04 |  |  |  |  |  |  |  |  |  |  |
| SDR-2-CON-ST-ZA-4600 |  | Install Catch basin | 21d | 2026-10-20 A | 2027-03-04 | SDR-2-CON-ST-ZA-4590 | 25% | 21d | 2027-02-08 | 2027-03-04 | 17d | 0d | SIC- Cost [69655.4]; Plumbing Helper [76.74 h]; Labor [76.74 h]; Plumber [76.74 h]; Excavator [7 h]; Excavator Operator [76.74 h] | 133,449.82 | Z A |
|  | 4 | **Testing** |  | 2027-03-06 | 2027-03-21 |  |  |  |  |  |  |  |  |  |  |
| SDR-2-CON-ST-ZA-4610 |  | Testing for Catch basin pipe | 10d | 2027-03-06 | 2027-03-21 | SDR-2-CON-ST-ZA-4600 |  |  |  |  | 17d | 0d | SIC- Cost [69655.4]; Plumbing Helper [95.54 h]; Labor [25.6 h]; Plumber [95.54 h]; Excavator [6 h]; Excavator Operator [119.42 h] | 29,655.52 | Z A |
|  | 5 | **Backfilling** |  | 2027-03-22 | 2027-05-03 |  |  |  |  |  |  |  |  |  |  |
| SDR-2-CON-ST-ZA-7020 |  | Backfilling for Catch basin Section 1 | 14d | 2027-03-22 | 2027-04-06 | SDR-2-CON-ST-ZA-4610 |  |  |  |  | 17d | 8d | SIC- Cost [69655.4]; Labor [763.87 h]; Plumber [743.72 h]; Excavator [14.13 h]; Excavator Operator [763.87 h] | 29,655.42 | Z A |
| SDR-2-CON-ST-ZA-4620 |  | Backfilling for Catch basin Section 2 | 15d | 2027-04-17 | 2027-05-03 | SDR-2-CON-ST-ZA-7020, SDR-2-CON-RW-ZG-2060 |  |  |  |  | 9d | 6d | SIC- Cost [69655.4]; Labor [108.83 h]; Plumber [40.13 h]; Excavator [8 h]; Excavator Operator [68.52 h] | 29,655.45 | Z A |
|  | 16 | **STORM WATER LINE IN ( PH2-A-MCH0 )** |  | 2026-07-01 | 2027-05-01 |  |  |  |  |  |  |  |  |  |  |
|  | 8 | **Pipes Works** |  | 2026-07-01 | 2027-02-06 |  |  |  |  |  |  |  |  |  |  |
|  | 1 | **Excavation** |  | 2026-07-01 | 2026-07-20 |  |  |  |  |  |  |  |  |  |  |
| SDR-2-CON-ST-ZA-6510 |  | Excavation for GRP Pipes Section 1 | 21d | 2026-07-01 A | 2026-07-11 A | SDR-2-CON-ST-ZA-6480 SS | 100% |  | 2026-08-06 | 2026-08-30 |  |  | SIC- Cost; Labor [44.81 h]; Plumber [40.74 h]; Excavator [24.78 h]; Excavator Operator [40.74 h] | 41,047.61 | Z A |
| SDR-2-CON-ST-ZA-4630 |  | Excavation for GRP Pipes Section 2 | 21d | 2026-07-12 A | 2026-07-20 A | SDR-2-CON-ST-ZA-6510 | 100% |  | 2026-08-31 | 2026-09-24 |  |  | SIC- Cost; Labor [44.81 h]; Plumber [40.74 h]; Excavator [24.78 h]; Excavator Operator [40.74 h] | 41,047.61 | Z A |
|  | 7 | **bedding Works** |  | 2026-10-10 | 2026-11-24 |  |  |  |  |  |  |  |  |  |  |
| SDR-2-CON-ST-ZA-4690 |  | Sand bedding for GRP Pipes | 21d | 2026-10-10 A | 2026-11-24 | SDR-2-CON-ST-ZA-4630 | 25% | 21d | 2026-10-12 | 2026-11-04 | 8d | 0d | SIC- Cost; Labor [44.81 h]; Plumber [95.54 h]; Excavator [10 h]; Excavator Operator [95.54 h]; Dumper Truck [30 h]; Loader [30 h] | 20,523.81 | Z A |
|  | 2 | **Pipes Laying** |  | 2026-10-10 | 2026-12-19 |  |  |  |  |  |  |  |  |  |  |
| SDR-2-CON-ST-ZA-4640 |  | Install ST GRP Pipes | 21d | 2026-10-10 A | 2026-12-19 | SDR-2-CON-ST-ZA-4690 | 25% | 21d | 2026-11-05 | 2026-11-29 | 8d | 0d | Pipe Fitter [40.74 h]; SIC- Cost; Labor [40.74 h]; Plumber [40.74 h]; Excavator [10 h]; Excavator Operator [40.74 h] | 184,714.18 | Z A |
|  | 6 | **Testing** |  | 2026-12-20 | 2027-01-12 |  |  |  |  |  |  |  |  |  |  |
| SDR-2-CON-ST-ZA-4680 |  | Testing ST GRP Pipes | 21d | 2026-12-20 | 2027-01-12 | SDR-2-CON-ST-ZA-4640 |  |  |  |  | 8d | 0d | SIC- Cost; Plumbing Helper [40.74 h]; Labor [12.8 h]; Plumber [40.74 h]; Excavator [12 h]; Excavator Operator [40.74 h] | 41,047.61 | Z A |
|  | 3 | **Backfilling** |  | 2027-01-13 | 2027-02-06 |  |  |  |  |  |  |  |  |  |  |
| SDR-2-CON-ST-ZA-4650 |  | Backfilling ST GRP Pipes | 21d | 2027-01-13 | 2027-02-06 | SDR-2-CON-RW-ZG-2500, SDR-2-CON-ST-ZA-4680 |  |  |  |  | 8d | 0d | SIC- Cost [9218]; Labor [1926.46 h]; Plumber [81.48 h]; Excavator [12 h]; Excavator Operator [40.74 h] | 82,095.22 | Z A |
|  | 4 | **Manholes** |  | 2026-07-01 | 2027-02-07 |  |  |  |  |  |  |  |  |  |  |
|  | 1 | **Excavation** |  | 2026-07-01 | 2026-11-01 |  |  |  |  |  |  |  |  |  |  |
| SDR-2-CON-ST-ZA-6520 |  | Excavation Manholes Section 1 | 21d | 2026-07-01 A | 2026-08-31 A | SDR-2-CON-ST-ZA-6510 SS | 100% |  | 2026-08-06 | 2026-08-30 |  |  | SIC- Cost [18560]; Labor [6.4 h]; Plumber [334.38 h]; Excavator [20 h]; Excavator Operator [417.97 h] | 31,582.66 | Z A |
| SDR-2-CON-ST-ZA-6350 |  | Excavation Manholes Section 2 | 21d | 2026-07-13 A | 2026-11-01 | SDR-2-CON-ST-ZA-6520 FS+3d | 60% | 1d | 2026-09-03 | 2026-09-28 | 12d | 0d | SIC- Cost [18560]; Labor [6.4 h]; Plumber [334.38 h]; Excavator [20 h]; Excavator Operator [417.97 h] | 31,582.66 | Z A |

| ID | WBS | Activity | Duration | Start | Finish | Predecessors | Complete | Remaining | Planned start | Planned finish | Total float | Free float | Resources | Cost | ZONE A |
| --- | --- | --- | --- | --- | --- | --- | --- | --- | --- | --- | --- | --- | --- | --- | --- |
|  | 2 | **bedding Works** |  | 2026-11-02 | 2026-11-25 |  |  |  |  |  |  |  |  |  |  |
| SDR-2-CON-ST-ZA-4700 |  | Sand bedding for Manholes | 21d | 2026-11-02 | 2026-11-25 | SDR-2-CON-ST-ZA-6350 |  |  |  |  | 12d | 0d | SIC- Cost [18560]; Labor [6.4 h]; Plumber [248.39 h]; Excavator [12 h]; Excavator Operator [310.49 h]; Dumper Truck [10 h]; Loader [33.4 h] | 42,110.21 | Z A |
|  | 3 | **Install Manholes** |  | 2026-11-26 | 2026-12-20 |  |  |  |  |  |  |  |  |  |  |
| SDR-2-CON-ST-ZA-4710 |  | Manholes Installation | 21d | 2026-11-26 | 2026-12-20 | SDR-2-CON-ST-ZA-4700 |  |  |  |  | 12d | 0d | SIC- Cost [18560]; Plumbing Helper [678.97 h]; Labor [678.97 h]; Plumber [678.97 h]; Excavator [12.47 h]; Excavator Operator [12.07 h] | 189,495.94 | Z A |
|  | 4 | **Testing** |  | 2026-12-21 | 2027-01-13 |  |  |  |  |  |  |  |  |  |  |
| SDR-2-CON-ST-ZA-4720 |  | Testing for Manholes | 21d | 2026-12-21 | 2027-01-13 | SDR-2-CON-ST-ZA-4710 |  |  |  |  | 17d | 0d | SIC- Cost; Plumbing Helper [57.79 h]; Labor [6.4 h]; Plumber [57.79 h]; Excavator [6.43 h]; Excavator Operator [6.74 h] | 42,110.87 | Z A |
|  | 5 | **Backfilling** |  | 2027-01-14 | 2027-02-07 |  |  |  |  |  |  |  |  |  |  |
| SDR-2-CON-ST-ZA-4730 |  | Backfilling for Manholes | 21d | 2027-01-14 | 2027-02-07 | SDR-2-CON-ST-ZA-4720 |  |  |  |  | 17d | 0d | SIC- Cost [18560]; Labor [6.4 h]; Plumber [267.5 h]; Excavator [12 h]; Excavator Operator [334.38 h] | 84,220.42 | Z A |
|  | 5 | **Catch basin** |  | 2026-08-16 | 2027-05-01 |  |  |  |  |  |  |  |  |  |  |
|  | 1 | **Excavation** |  | 2026-08-16 | 2027-01-13 |  |  |  |  |  |  |  |  |  |  |
| SDR-2-CON-ST-ZA-6530 |  | Excavation for Catch basin Section 1 | 21d | 2026-08-16 A | 2026-12-20 | SDR-2-CON-ST-ZA-4710 FF | 40% | 1d | 2026-11-17 | 2026-12-10 | 12d | 0d | SIC- Cost [55598.8]; Labor [19.2 h]; Plumber [334.38 h]; Excavator [14.44 h]; Excavator Operator [14.45 h] | 22,241.64 | Z A |
| SDR-2-CON-ST-ZA-4670 |  | Excavation for Catch basin Section 2 | 21d | 2026-12-21 | 2027-01-13 | SDR-2-CON-ST-ZA-6530 |  |  |  |  | 12d | 0d | SIC- Cost [55598.8]; Labor [19.2 h]; Plumber [334.38 h]; Excavator [14.44 h]; Excavator Operator [417.97 h] | 22,241.64 | Z A |
|  | 2 | **bedding Works** |  | 2027-01-14 | 2027-02-07 |  |  |  |  |  |  |  |  |  |  |
| SDR-2-CON-ST-ZA-4740 |  | Sand Dedding for Catch basin | 21d | 2027-01-14 | 2027-02-07 | SDR-2-CON-ST-ZA-4670 |  |  |  |  | 12d | 0d | SIC- Cost [69655.4]; Labor [678.97 h]; Plumber [678.97 h]; Excavator [12.64 h]; Excavator Operator [678.97 h]; Dumper Truck [554 h]; Loader [329.53 h] | 29,655.52 | Z A |
|  | 3 | **Install Catch basin** |  | 2027-02-14 | 2027-03-15 |  |  |  |  |  |  |  |  |  |  |
| SDR-2-CON-ST-ZA-4750 |  | Install Catch basin | 21d | 2027-02-14 | 2027-03-15 | SDR-2-CON-ST-ZA-4740 FS+5d |  |  |  |  | 12d | 0d | SIC- Cost [69655.4]; Plumbing Helper [143.3 h]; Labor [25.6 h]; Plumber [143.3 h]; Excavator [14.4 h]; Excavator Operator [76.74 h] | 133,449.82 | Z A |
|  | 4 | **Testing** |  | 2027-03-16 | 2027-03-27 |  |  |  |  |  |  |  |  |  |  |
| SDR-2-CON-ST-ZA-4760 |  | Testing for Catch basin pipe | 10d | 2027-03-16 | 2027-03-27 | SDR-2-CON-ST-ZA-4750 |  |  |  |  | 12d | 0d | SIC- Cost [69655.4]; Plumbing Helper [95.54 h]; Labor [25.6 h]; Plumber [95.54 h]; Excavator [6 h]; Excavator Operator [119.42 h] | 29,655.52 | Z A |
|  | 5 | **Backfilling** |  | 2027-03-28 | 2027-05-01 |  |  |  |  |  |  |  |  |  |  |
| SDR-2-CON-ST-ZA-7030 |  | Backfilling for Catch basin Section 1 | 14d | 2027-03-28 | 2027-04-12 | SDR-2-CON-ST-ZA-4760 |  |  |  |  | 12d | 1d | SIC- Cost [69655.4]; Labor [773.95 h]; Plumber [743.72 h]; Excavator [24.88 h]; Excavator Operator [763.87 h] | 29,655.42 | Z A |
| SDR-2-CON-ST-ZA-4770 |  | Backfilling for Catch basin Section 2 | 15d | 2027-04-14 | 2027-05-01 | SDR-2-CON-ST-ZA-7030, SDR-2-CON-RW-ZG-1910 |  |  |  |  | 11d | 8d | SIC- Cost [69655.4]; Labor [108.83 h]; Plumber [40.13 h]; Excavator [8 h]; Excavator Operator [68.52 h] | 29,655.42 | Z A |
|  | 1 | **STORM WATER LINE IN ( PH2-A-MCA0 )** |  | 2026-06-15 | 2027-05-02 |  |  |  |  |  |  |  |  |  |  |
|  | 8 | **Pipes Works** |  | 2026-06-22 | 2027-01-21 |  |  |  |  |  |  |  |  |  |  |
|  | 1 | **Excavation** |  | 2026-06-22 | 2026-07-20 |  |  |  |  |  |  |  |  |  |  |
| SDR-2-CON-ST-ZA-6540 |  | Excavation for GRP Pipes Section 1 | 21d | 2026-06-22 A | 2026-06-29 A | SDR-2-CON-ST-ZA-6360 SS | 100% |  | 2026-08-05 | 2026-08-29 |  |  | SIC- Cost; Labor [44.81 h]; Plumber [95.54 h]; Excavator [20 h]; Excavator Operator [95.54 h] | 249,487.76 | Z A |
| SDR-2-CON-ST-ZA-4780 |  | Excavation for GRP Pipes Section 2 | 21d | 2026-07-01 A | 2026-07-20 A | SDR-2-CON-ST-ZA-6540 | 100% |  | 2026-08-30 | 2026-09-22 |  |  | SIC- Cost; Labor [44.81 h]; Plumber [95.54 h]; Excavator [20 h]; Excavator Operator [95.54 h] | 249,487.76 | Z A |

| ID | WBS | Activity | Duration | Start | Finish | Predecessors | Complete | Remaining | Planned start | Planned finish | Total float | Free float | Resources | Cost | ZONE A |
| --- | --- | --- | --- | --- | --- | --- | --- | --- | --- | --- | --- | --- | --- | --- | --- |
|  | 7 | **bedding Works** |  | 2026-10-01 | 2026-11-24 |  |  |  |  |  |  |  |  |  |  |
| SDR-2-CON-ST-ZA-4840 |  | Sand bedding for GRP Pipes | 21d | 2026-10-01 A | 2026-11-24 | SDR-2-CON-ST-ZA-4780 | 25% | 21d | 2026-10-05 | 2026-10-28 | 31d | 0d | SIC- Cost; Labor [44.81 h]; Plumber [95.54 h]; Excavator [14.4 h]; Excavator Operator [14.45 h]; Dumper Truck [100 h]; Loader [10 h] | 124,743.88 | Z A |
|  | 2 | **Pipes Laying** |  | 2026-10-22 | 2026-11-24 |  |  |  |  |  |  |  |  |  |  |
| SDR-2-CON-ST-ZA-4790 |  | Install ST GRP Pipes | 21d | 2026-10-22 A | 2026-11-24 | SDR-2-CON-ST-ZA-4840 SS+15d | 25% | 21d | 2026-10-26 | 2026-11-18 | 31d | 0d | Pipe Fitter [95.54 h]; SIC- Cost; Labor [51.21 h]; Plumber [81.48 h]; Excavator [14.24 h]; Excavator Operator [14.08 h] | 1,122,694.97 | Z A |
|  | 6 | **Testing** |  | 2026-11-25 | 2026-12-19 |  |  |  |  |  |  |  |  |  |  |
| SDR-2-CON-ST-ZA-4830 |  | Testing ST GRP Pipes | 21d | 2026-11-25 | 2026-12-19 | SDR-2-CON-ST-ZA-4790 |  |  |  |  | 31d | 0d | SIC- Cost; Plumbing Helper [40.74 h]; Labor [12.8 h]; Plumber [40.74 h]; Excavator [13.44 h]; Excavator Operator [40.74 h] | 249,487.76 | Z A |
|  | 3 | **Backfilling** |  | 2026-12-29 | 2027-01-21 |  |  |  |  |  |  |  |  |  |  |
| SDR-2-CON-ST-ZA-4800 |  | Backfilling ST GRP Pipes | 21d | 2026-12-29 | 2027-01-21 | SDR-2-CON-ST-ZA-4830 FS+8d |  |  |  |  | 31d | 14d | SIC- Cost; Labor [12.8 h]; Plumber [67.9 h]; Excavator [15.28 h]; Excavator Operator [67.9 h]; Water Tanker [338.75 h] | 498,975.52 | Z A |
|  | 4 | **Manholes** |  | 2026-06-15 | 2027-02-07 |  |  |  |  |  |  |  |  |  |  |
|  | 1 | **Excavation** |  | 2026-06-15 | 2026-11-01 |  |  |  |  |  |  |  |  |  |  |
| SDR-2-CON-ST-ZA-6550 |  | Excavation Manholes Section 1 | 21d | 2026-06-15 A | 2026-08-31 A | SDR-2-CON-ST-ZA-6540 SS | 100% |  | 2026-08-05 | 2026-08-29 |  |  | SIC- Cost [18560]; Labor [6.4 h]; Plumber [334.38 h]; Excavator [20 h]; Excavator Operator [417.97 h] | 31,582.66 | Z A |
| SDR-2-CON-ST-ZA-4810 |  | Excavation Manholes Section 2 | 21d | 2026-07-14 A | 2026-11-01 | SDR-2-CON-ST-ZA-6550 | 50% | 1d | 2026-08-30 | 2026-09-22 | 4d | 0d | SIC- Cost [18560]; Labor [6.4 h]; Plumber [334.38 h]; Excavator [20 h]; Excavator Operator [417.97 h] | 31,582.66 | Z A |
|  | 2 | **bedding Works** |  | 2026-10-07 | 2026-11-25 |  |  |  |  |  |  |  |  |  |  |
| SDR-2-CON-ST-ZA-4850 |  | Sand bedding for Manholes | 21d | 2026-10-07 A | 2026-11-25 | SDR-2-CON-ST-ZA-4810 | 25% | 21d | 2026-10-13 | 2026-11-05 | 4d | 0d | SIC- Cost [18560]; Labor [6.4 h]; Plumber [210.18 h]; Excavator [6.54 h]; Excavator Operator [262.72 h]; Dumper Truck [175 h]; Loader [15.87 h] | 42,110.21 | Z A |
|  | 3 | **Install Manholes** |  | 2026-10-07 | 2026-12-20 |  |  |  |  |  |  |  |  |  |  |
| SDR-2-CON-ST-ZA-4860 |  | Manholes Installation | 21d | 2026-10-07 A | 2026-12-20 | SDR-2-CON-ST-ZA-4850 | 25% | 21d | 2026-11-07 | 2026-11-30 | 4d | 0d | SIC- Cost [18560]; Plumbing Helper [191.07 h]; Labor [6.4 h]; Plumber [191.07 h]; Excavator [12.5 h]; Excavator Operator [238.84 h] | 189,495.94 | Z A |
|  | 4 | **Testing** |  | 2026-12-21 | 2027-01-13 |  |  |  |  |  |  |  |  |  |  |
| SDR-2-CON-ST-ZA-4870 |  | Testing for Manholes | 21d | 2026-12-21 | 2027-01-13 | SDR-2-CON-ST-ZA-4860 |  |  |  |  | 13d | 0d | SIC- Cost [18560]; Plumbing Helper [678.97 h]; Labor [678.97 h]; Plumber [678.97 h]; Excavator [6 h]; Excavator Operator [6.03 h] | 42,110.87 | Z A |
|  | 5 | **Backfilling** |  | 2027-01-14 | 2027-02-07 |  |  |  |  |  |  |  |  |  |  |
| SDR-2-CON-ST-ZA-4880 |  | Backfilling for Manholes | 21d | 2027-01-14 | 2027-02-07 | SDR-2-CON-ST-ZA-4870 |  |  |  |  | 13d | 0d | SIC- Cost [18560]; Dump Truck [370 h]; Loader [80 h]; Labor [678.97 h]; Plumber [678.97 h]; Excavator [11.95 h]; Excavator Operator [678.97 h]; Grader [120 h]; Water Tanker [476.25 h] | 84,220.42 | Z A |
|  | 5 | **Catch basin** |  | 2026-10-20 | 2027-05-02 |  |  |  |  |  |  |  |  |  |  |
|  | 1 | **Excavation** |  | 2026-10-20 | 2027-01-20 |  |  |  |  |  |  |  |  |  |  |
| SDR-2-CON-ST-ZA-6560 |  | Excavation for Catch basin Section 2 | 21d | 2026-10-20 A | 2026-12-20 | SDR-2-CON-ST-ZA-4860 FF | 10% | 21d | 2026-11-21 | 2026-12-14 | 4d | 0d | SIC- Cost [55598.8]; Labor [19.2 h]; Plumber [334.38 h]; Excavator [13.15 h]; Excavator Operator [14.45 h] | 22,241.64 | Z A |
| SDR-2-CON-ST-ZA-4820 |  | Excavation for Catch basin Section 1 | 21d | 2026-10-21 A | 2027-01-20 | SDR-2-CON-ST-ZA-6560 FS+6d | 50% | 21d | 2026-12-22 | 2027-01-14 | 7d | 0d | SIC- Cost [55598.8]; Labor [19.2 h]; Plumber [334.38 h]; Excavator [13.15 h]; Excavator Operator [417.97 h] | 22,241.64 | Z A |

| ID | WBS | Activity | Duration | Start | Finish | Predecessors | Complete | Remaining | Planned start | Planned finish | Total float | Free float | Resources | Cost | ZONE A |
| --- | --- | --- | --- | --- | --- | --- | --- | --- | --- | --- | --- | --- | --- | --- | --- |
|  | 2 | **bedding Works** |  | 2026-10-22 | 2027-02-14 |  |  |  |  |  |  |  |  |  |  |
| SDR-2-CON-ST-ZA-4890 |  | Sand Dedding for Catch basin | 21d | 2026-10-22 A | 2027-02-14 | SDR-2-CON-ST-ZA-4820 | 20% | 21d | 2027-01-16 | 2027-02-08 | 7d | 0d | SIC- Cost [69655.4]; Labor [25.6 h]; Plumber [191.07 h]; Excavator [7.38 h]; Excavator Operator [238.84 h]; Dumper Truck [137.24 h]; Loader [67.62 h]; Water Tanker [122.5 h] | 29,655.52 | Z A |
|  | 3 | **Install Catch basin** |  | 2026-10-24 | 2027-03-16 |  |  |  |  |  |  |  |  |  |  |
| SDR-2-CON-ST-ZA-4900 |  | Install Catch basin | 21d | 2026-10-24 A | 2027-03-16 | SDR-2-CON-ST-ZA-4890 | 20% | 21d | 2027-02-09 | 2027-03-06 | 7d | 0d | SIC- Cost [69655.4]; Plumbing Helper [181.52 h]; Labor [25.6 h]; Plumber [181.52 h]; Excavator [15.2 h]; Excavator Operator [26.16 h] | 133,449.82 | Z A |
|  | 4 | **Testing** |  | 2027-03-17 | 2027-03-30 |  |  |  |  |  |  |  |  |  |  |
| SDR-2-CON-ST-ZA-4910 |  | Testing for Catch basin pipe | 12d | 2027-03-17 | 2027-03-30 | SDR-2-CON-ST-ZA-4900 |  |  |  |  | 7d | 0d | SIC- Cost [69655.4]; Plumbing Helper [95.54 h]; Loader [40 h]; Labor [25.6 h]; Plumber [95.54 h]; Excavator [6 h]; Excavator Operator [119.42 h] | 29,655.52 | Z A |
|  | 5 | **Backfilling** |  | 2027-03-31 | 2027-05-02 |  |  |  |  |  |  |  |  |  |  |
| SDR-2-CON-ST-ZA-7040 |  | Backfilling for Catch basin Section 1 | 14d | 2027-03-31 | 2027-04-15 | SDR-2-CON-ST-ZA-4910 |  |  |  |  | 7d | 0d | SIC- Cost [69655.4]; Loader [128.51 h]; Labor [380.93 h]; Plumber [360.77 h]; Excavator [12.51 h]; Excavator Operator [380.93 h]; Grader [112.32 h] | 29,655.42 | Z A |
| SDR-2-CON-ST-ZA-4920 |  | Backfilling for Catch basin Section 2 | 14d | 2027-04-17 | 2027-05-02 | SDR-2-CON-ST-ZA-7040 |  |  |  |  | 7d |  | SIC- Cost [69655.4]; Loader [71.89 h]; Labor [280.15 h]; Plumber [40.13 h]; Excavator [41.38 h]; Excavator Operator [280.15 h]; Grader [53.97 h] | 29,655.42 | Z A |
|  | 17 | **STORM WATER LINE IN ( PH2-A-MCI0 )** |  | 2026-07-01 | 2027-04-29 |  |  |  |  |  |  |  |  |  |  |
|  | 8 | **Pipes Works** |  | 2026-07-01 | 2027-02-06 |  |  |  |  |  |  |  |  |  |  |
|  | 1 | **Excavation** |  | 2026-07-01 | 2026-08-05 |  |  |  |  |  |  |  |  |  |  |
| SDR-2-CON-ST-ZA-6570 |  | Excavation for GRP Pipes Section 1 | 21d | 2026-07-01 A | 2026-07-20 A | SDR-2-CON-ST-ZA-6540 SS+4d | 100% |  | 2026-08-10 | 2026-09-02 |  |  | SIC- Cost [9218]; Labor [44.81 h]; Plumber [95.54 h]; Excavator [20 h]; Excavator Operator [95.54 h] | 91,070.94 | Z A |
| SDR-2-CON-ST-ZA-4930 |  | Excavation for GRP Pipes Section 2 | 21d | 2026-07-21 A | 2026-08-05 A | SDR-2-CON-ST-ZA-6570 | 100% |  | 2026-09-03 | 2026-09-28 |  |  | SIC- Cost [9218]; Labor [44.81 h]; Plumber [95.54 h]; Excavator [20 h]; Excavator Operator [95.54 h] | 91,070.94 | Z A |
|  | 7 | **bedding Works** |  | 2026-10-17 | 2026-11-24 |  |  |  |  |  |  |  |  |  |  |
| SDR-2-CON-ST-ZA-4990 |  | Sand bedding for GRP Pipes | 21d | 2026-10-17 A | 2026-11-24 | SDR-2-CON-ST-ZA-4930 | 50% | 21d | 2026-10-19 | 2026-11-11 | 18d | 0d | SIC- Cost [9218]; Labor [44.81 h]; Plumber [95.54 h]; Excavator [13.93 h]; Excavator Operator [67.9 h]; Dumper Truck [50 h]; Loader [17.14 h] | 45,535.46 | Z A |
|  | 2 | **Pipes Laying** |  | 2026-10-18 | 2026-12-19 |  |  |  |  |  |  |  |  |  |  |
| SDR-2-CON-ST-ZA-4940 |  | Install ST GRP Pipes | 21d | 2026-10-18 A | 2026-12-19 | SDR-2-CON-ST-ZA-4990 | 50% | 21d | 2026-11-12 | 2026-12-06 | 18d | 0d | Pipe Fitter [67.9 h]; SIC- Cost; Labor [51.21 h]; Plumber [67.9 h]; Excavator [12 h]; Excavator Operator [20.11 h] | 409,819.21 | Z A |
|  | 6 | **Testing** |  | 2026-12-20 | 2027-01-12 |  |  |  |  |  |  |  |  |  |  |
| SDR-2-CON-ST-ZA-4980 |  | Testing ST GRP Pipes | 21d | 2026-12-20 | 2027-01-12 | SDR-2-CON-RW-ZG-2500, SDR-2-CON-ST-ZA-4940 |  |  |  |  | 18d | 0d | SIC- Cost; Plumbing Helper [40.74 h]; Labor [12.8 h]; Plumber [40.74 h]; Excavator [13.33 h]; Excavator Operator [40.74 h] | 91,070.94 | Z A |
|  | 3 | **Backfilling** |  | 2027-01-13 | 2027-02-06 |  |  |  |  |  |  |  |  |  |  |
| SDR-2-CON-ST-ZA-4950 |  | Backfilling ST GRP Pipes | 21d | 2027-01-13 | 2027-02-06 | SDR-2-CON-ST-ZA-4980 |  |  |  |  | 18d | 1d | SIC- Cost; Labor [12.8 h]; Plumber [40.74 h]; Excavator [12 h]; Excavator Operator [40.74 h]; Water Tanker [326.25 h] | 182,141.87 | Z A |
|  | 4 | **Manholes** |  | 2026-07-20 | 2027-02-07 |  |  |  |  |  |  |  |  |  |  |
|  | 1 | **Excavation** |  | 2026-07-20 | 2026-11-01 |  |  |  |  |  |  |  |  |  |  |
| SDR-2-CON-ST-ZA-6580 |  | Excavation Manholes Section 1 | 21d | 2026-07-20 A | 2026-07-30 A | SDR-2-CON-ST-ZA-6570 SS | 100% |  | 2026-08-10 | 2026-09-02 |  |  | SIC- Cost [18560]; Labor [6.4 h]; Plumber [238.84 h]; Excavator [20 h]; Excavator Operator [298.55 h] | 12,364.4 | Z A |
| SDR-2-CON-ST-ZA-4960 |  | Excavation Manholes Section 2 | 21d | 2026-07-30 A | 2026-11-01 | SDR-2-CON-ST-ZA-6580 | 50% | 1d | 2026-09-03 | 2026-09-28 | 13d | 0d | SIC- Cost [18560]; Labor [6.4 h]; Plumber [238.84 h]; Excavator [20 h]; Excavator Operator [298.55 h] | 12,364.4 | Z A |

| ID | WBS | Activity | Duration | Start | Finish | Predecessors | Complete | Remaining | Planned start | Planned finish | Total float | Free float | Resources | Cost | ZONE A |
| --- | --- | --- | --- | --- | --- | --- | --- | --- | --- | --- | --- | --- | --- | --- | --- |
|  | 2 | **bedding Works** |  | 2026-11-02 | 2026-11-25 |  |  |  |  |  |  |  |  |  |  |
| SDR-2-CON-ST-ZA-5000 |  | Sand bedding for Manholes | 21d | 2026-11-02 | 2026-11-25 | SDR-2-CON-ST-ZA-4960 |  |  |  |  | 13d | 0d | SIC- Cost; Labor [6.4 h]; Plumber [96.32 h]; Excavator [9.62 h]; Excavator Operator [9.63 h]; Dumper Truck [275 h]; Loader [10 h] | 16,485.87 | Z A |
|  | 3 | **Install Manholes** |  | 2026-11-26 | 2026-12-20 |  |  |  |  |  |  |  |  |  |  |
| SDR-2-CON-ST-ZA-5010 |  | Manholes Installation | 21d | 2026-11-26 | 2026-12-20 | SDR-2-CON-ST-ZA-5000 |  |  |  |  | 13d | 0d | SIC- Cost [18560]; Plumbing Helper [191.07 h]; Labor [6.4 h]; Plumber [191.07 h]; Excavator [14.4 h]; Excavator Operator [238.84 h] | 74,186.42 | Z A |
|  | 4 | **Testing** |  | 2026-12-21 | 2027-01-13 |  |  |  |  |  |  |  |  |  |  |
| SDR-2-CON-ST-ZA-5020 |  | Testing for Manholes | 21d | 2026-12-21 | 2027-01-13 | SDR-2-CON-ST-ZA-5010 |  |  |  |  | 17d | 0d | SIC- Cost [18560]; Plumbing Helper [95.54 h]; Labor [6.4 h]; Plumber [95.54 h]; Excavator [6 h]; Excavator Operator [6.03 h] | 16,485.87 | Z A |
|  | 5 | **Backfilling** |  | 2027-01-14 | 2027-02-07 |  |  |  |  |  |  |  |  |  |  |
| SDR-2-CON-ST-ZA-5030 |  | Backfilling for Manholes | 21d | 2027-01-14 | 2027-02-07 | SDR-2-CON-ST-ZA-5020 |  |  |  |  | 17d | 0d | SIC- Cost [18560]; Dump Truck [380 h]; Loader [139.67 h]; Labor [678.97 h]; Plumber [678.97 h]; Excavator [12.32 h]; Excavator Operator [12.52 h]; Grader [120 h] | 32,971.75 | Z A |
|  | 5 | **Catch basin** |  | 2026-10-20 | 2027-04-29 |  |  |  |  |  |  |  |  |  |  |
|  | 1 | **Excavation** |  | 2026-10-20 | 2027-01-13 |  |  |  |  |  |  |  |  |  |  |
| SDR-2-CON-ST-ZA-4970 |  | Excavation for Catch basin Section 1 | 21d | 2026-10-20 A | 2026-10-26 A | SDR-2-CON-ST-ZA-6590 FS+5d | 100% |  | 2027-01-14 | 2027-02-07 |  |  | SIC- Cost [55598.8]; Labor [19.2 h]; Plumber [286.61 h]; Excavator [14.44 h]; Excavator Operator [358.26 h] | 22,241.64 | Z A |
| SDR-2-CON-ST-ZA-6590 |  | Excavation for Catch basin Section 2 | 21d | 2026-10-22 A | 2027-01-13 | SDR-2-CON-ST-ZA-5010 | 20% | 21d | 2026-12-15 | 2027-01-07 | 13d | 0d | SIC- Cost [55598.8]; Labor [19.2 h]; Plumber [286.61 h]; Excavator [14.44 h]; Excavator Operator [358.26 h] | 22,241.64 | Z A |
|  | 2 | **bedding Works** |  | 2026-10-24 | 2027-02-13 |  |  |  |  |  |  |  |  |  |  |
| SDR-2-CON-ST-ZA-5040 |  | Sand Dedding for Catch basin | 21d | 2026-10-24 A | 2027-02-13 | SDR-2-CON-ST-ZA-4970 | 20% | 21d | 2027-01-14 | 2027-02-07 | 29d | 0d | SIC- Cost [69655.4]; Labor [25.6 h]; Plumber [191.07 h]; Excavator [12 h]; Excavator Operator [238.84 h]; Dumper Truck [929.05 h]; Loader [103.33 h]; Water Tanker [218.75 h] | 29,655.52 | Z A |
|  | 3 | **Install Catch basin** |  | 2026-10-24 | 2027-03-15 |  |  |  |  |  |  |  |  |  |  |
| SDR-2-CON-ST-ZA-5050 |  | Install Catch basin | 21d | 2026-10-24 A | 2027-03-15 | SDR-2-CON-ST-ZA-5040 | 20% | 21d | 2027-02-08 | 2027-03-04 | 29d | 0d | SIC- Cost [69655.4]; Plumbing Helper [76.74 h]; Labor [76.74 h]; Plumber [76.74 h]; Excavator [20 h]; Excavator Operator [76.74 h] | 133,449.82 | Z A |
|  | 4 | **Testing** |  | 2027-03-16 | 2027-03-29 |  |  |  |  |  |  |  |  |  |  |
| SDR-2-CON-ST-ZA-5060 |  | Testing for Catch basin pipe | 12d | 2027-03-16 | 2027-03-29 | SDR-2-CON-ST-ZA-5050 |  |  |  |  | 29d | 0d | SIC- Cost [69655.4]; Plumbing Helper [95.54 h]; Loader [68.57 h]; Labor [25.6 h]; Plumber [95.54 h]; Excavator [6 h]; Excavator Operator [119.42 h]; Grader [60 h] | 29,655.52 | Z A |
|  | 5 | **Backfilling** |  | 2027-03-30 | 2027-04-29 |  |  |  |  |  |  |  |  |  |  |
| SDR-2-CON-ST-ZA-7050 |  | Backfilling for Catch basin Section 1 | 15d | 2027-03-30 | 2027-04-15 | SDR-2-CON-ST-ZA-5060 |  |  |  |  | 29d | 0d | SIC- Cost [69655.4]; Loader [32.53 h]; Labor [25.6 h]; Plumber [84.53 h]; Excavator [9.2 h]; Excavator Operator [108.18 h] | 29,655.42 | Z A |
| SDR-2-CON-ST-ZA-5070 |  | Backfilling for Catch basin Section 2 | 12d | 2027-04-17 | 2027-04-29 | SDR-2-CON-ST-ZA-7050 |  |  |  |  | 29d | 24d | SIC- Cost [69655.4]; Loader [70 h]; Labor [25.6 h]; Plumber [40.13 h]; Excavator [49.5 h]; Excavator Operator [208.97 h] | 29,655.42 | Z A |
|  | 18 | **STORM WATER LINE From STA-A2/10 TO STA-A2/1** |  | 2026-07-21 | 2027-05-24 |  |  |  |  |  |  |  |  |  |  |
|  | 8 | **Pipes Works** |  | 2026-07-21 | 2027-02-06 |  |  |  |  |  |  |  |  |  |  |
|  | 1 | **Excavation** |  | 2026-07-21 | 2026-08-16 |  |  |  |  |  |  |  |  |  |  |
| SDR-2-CON-ST-ZA-6600 |  | Excavation for GRP Pipes Section 1 | 21d | 2026-07-21 A | 2026-08-01 A | SDR-2-CON-ST-ZA-6570 SS+4d | 100% |  | 2026-08-15 | 2026-09-07 |  |  | SIC- Cost [100]; Labor [44.81 h]; Plumber [95.54 h]; Excavator [20 h]; Excavator Operator [95.54 h] | 184,935.67 | Z A |
| SDR-2-CON-ST-ZA-5080 |  | Excavation for GRP Pipes Section 2 | 21d | 2026-08-12 A | 2026-08-16 A | SDR-2-CON-ST-ZA-6600 | 100% |  | 2026-09-08 | 2026-10-03 |  |  | SIC- Cost [100]; Labor [44.81 h]; Plumber [95.54 h]; Excavator [20 h]; Excavator Operator [95.54 h] | 184,935.67 | Z A |

| ID | WBS | Activity | Duration | Start | Finish | Predecessors | Total float | Free float | Resources | Cost | ZONE A |
| --- | --- | --- | --- | --- | --- | --- | --- | --- | --- | --- | --- |
|  | 7 | **bedding Works** |  | 2026-11-01 | 2026-11-24 |  |  |  |  |  |  |
| SDR-2-CON-ST-ZA-5140 |  | Sand bedding for GRP Pipes | 21d | 2026-11-01 | 2026-11-24 | SDR-2-CON-ST-ZA-5080 | 8d | 0d | SIC- Cost [9218]; Labor [44.81 h]; Plumber [81.48 h]; Excavator [15.53 h]; Excavator Operator [95.54 h]; Dumper Truck [60 h]; Loader [26.57 h] | 92,467.85 | Z A |
|  | 2 | **Pipes Laying** |  | 2026-11-25 | 2026-12-19 |  |  |  |  |  |  |
| SDR-2-CON-ST-ZA-5090 |  | Install ST GRP Pipes | 21d | 2026-11-25 | 2026-12-19 | SDR-2-CON-ST-ZA-5140 | 8d | 0d | Pipe Fitter [40.74 h]; SIC- Cost [34153.9]; Labor [51.21 h]; Plumber [40.74 h]; Excavator [12.41 h]; Excavator Operator [12.07 h] | 832,210.54 | Z A |
|  | 6 | **Testing** |  | 2026-12-20 | 2027-01-12 |  |  |  |  |  |  |
| SDR-2-CON-ST-ZA-5130 |  | Testing ST GRP Pipes | 21d | 2026-12-20 | 2027-01-12 | SDR-2-CON-ST-ZA-5090 | 8d | 0d | SIC- Cost; Plumbing Helper [40.74 h]; Labor [12.8 h]; Plumber [40.74 h]; Excavator [15.5 h]; Excavator Operator [40.74 h] | 184,935.67 | Z A |
|  | 3 | **Backfilling** |  | 2027-01-13 | 2027-02-06 |  |  |  |  |  |  |
| SDR-2-CON-ST-ZA-5100 |  | Backfilling ST GRP Pipes | 21d | 2027-01-13 | 2027-02-06 | SDR-2-CON-ST-ZA-5130 | 8d | 0d | SIC- Cost; Labor [12.8 h]; Plumber [40.74 h]; Excavator [12 h]; Excavator Operator [40.74 h] | 369,871.34 | Z A |
|  | 4 | **Manholes** |  | 2026-11-01 | 2027-04-01 |  |  |  |  |  |  |
|  | 1 | **Excavation** |  | 2026-11-01 | 2026-12-19 |  |  |  |  |  |  |
| SDR-2-CON-ST-ZA-6610 |  | Excavation Manholes Section 1 | 21d | 2026-11-01 | 2026-11-24 | SDR-2-CON-ST-ZA-6600 SS | 13d | 0d | SIC- Cost [18560]; Labor [6.4 h]; Plumber [267.5 h]; Excavator [20 h]; Excavator Operator [19.26 h] | 13,188.55 | Z A |
| SDR-2-CON-ST-ZA-5110 |  | Excavation Manholes Section 2 | 21d | 2026-11-25 | 2026-12-19 | SDR-2-CON-ST-ZA-6610 | 13d | 0d | SIC- Cost [18560]; Labor [6.4 h]; Plumber [267.5 h]; Excavator [20 h]; Excavator Operator [334.38 h] | 13,188.55 | Z A |
|  | 2 | **bedding Works** |  | 2026-12-20 | 2027-01-12 |  |  |  |  |  |  |
| SDR-2-CON-ST-ZA-5150 |  | Sand bedding for Manholes | 21d | 2026-12-20 | 2027-01-12 | SDR-2-CON-ST-ZA-5110 | 13d | 0d | SIC- Cost; Labor [6.4 h]; Plumber [96.32 h]; Excavator [11.15 h]; Excavator Operator [11.56 h]; Dumper Truck [125 h]; Loader [10 h] | 17,584.75 | Z A |
|  | 3 | **Install Manholes** |  | 2027-01-13 | 2027-02-06 |  |  |  |  |  |  |
| SDR-2-CON-ST-ZA-5160 |  | Manholes Installation | 21d | 2027-01-13 | 2027-02-06 | SDR-2-CON-ST-ZA-5150 | 13d | 0d | SIC- Cost [18560]; Plumbing Helper [210.18 h]; Labor [6.4 h]; Plumber [210.18 h]; Excavator [15.15 h]; Excavator Operator [262.72 h] | 79,131.33 | Z A |
|  | 4 | **Testing** |  | 2027-02-07 | 2027-03-03 |  |  |  |  |  |  |
| SDR-2-CON-ST-ZA-5170 |  | Testing for Manholes | 21d | 2027-02-07 | 2027-03-03 | SDR-2-CON-ST-ZA-5160 | 13d | 0d | SIC- Cost [18560]; Plumbing Helper [95.54 h]; Labor [6.4 h]; Plumber [95.54 h]; Excavator [14.6 h]; Excavator Operator [119.42 h] | 17,584.75 | Z A |
|  | 5 | **Backfilling** |  | 2027-03-04 | 2027-04-01 |  |  |  |  |  |  |
| SDR-2-CON-ST-ZA-5180 |  | Backfilling for Manholes | 21d | 2027-03-04 | 2027-04-01 | SDR-2-CON-ST-ZA-5170 | 13d | 0d | SIC- Cost [18560]; Labor [6.4 h]; Plumber [248.39 h]; Excavator [12.47 h]; Excavator Operator [310.49 h] | 35,169.48 | Z A |
|  | 5 | **Catch basin** |  | 2027-01-14 | 2027-05-24 |  |  |  |  |  |  |
|  | 1 | **Excavation** |  | 2027-01-14 | 2027-03-04 |  |  |  |  |  |  |
| SDR-2-CON-ST-ZA-6620 |  | Excavation for Catch basin Section 1 | 21d | 2027-01-14 | 2027-02-07 | SDR-2-CON-ST-ZA-6590 | 13d | 0d | SIC- Cost [55598.8]; Labor [19.2 h]; Plumber [334.38 h]; Excavator [13 h]; Excavator Operator [417.97 h] | 22,241.64 | Z A |
| SDR-2-CON-ST-ZA-5120 |  | Excavation for Catch basin Section 2 | 21d | 2027-02-08 | 2027-03-04 | SDR-2-CON-ST-ZA-6620 | 13d | 0d | SIC- Cost [55598.8]; Labor [19.2 h]; Plumber [334.38 h]; Excavator [13 h]; Excavator Operator [417.97 h] | 22,241.64 | Z A |

| ID | WBS | Activity | Duration | Start | Finish | Predecessors | Complete | Remaining | Planned start | Planned finish | Total float | Free float | Resources | Cost | ZONE A |
| --- | --- | --- | --- | --- | --- | --- | --- | --- | --- | --- | --- | --- | --- | --- | --- |
|  | 2 | **bedding Works** |  | 2027-03-06 | 2027-04-03 |  |  |  |  |  |  |  |  |  |  |
| SDR-2-CON-ST-ZA-5190 |  | Sand Dedding for Catch basin | 21d | 2027-03-06 | 2027-04-03 | SDR-2-CON-ST-ZA-5120 |  |  |  |  | 13d | 0d | SIC- Cost [69655.4]; Labor [25.6 h]; Plumber [238.84 h]; Excavator [14.07 h]; Excavator Operator [298.55 h]; Dumper Truck [346.08 h]; Loader [80 h]; Water Tanker [243.75 h] | 29,655.52 | Z A |
|  | 3 | **Install Catch basin** |  | 2027-04-04 | 2027-04-27 |  |  |  |  |  |  |  |  |  |  |
| SDR-2-CON-ST-ZA-5200 |  | Install Catch basin | 21d | 2027-04-04 | 2027-04-27 | SDR-2-CON-ST-ZA-5190, SDR-2-CON-ST-ZA-4200 |  |  |  |  | 13d | 0d | SIC- Cost [69655.4]; Plumbing Helper [9.43 h]; Labor [25.6 h]; Plumber [9.43 h]; Excavator [17.08 h]; Excavator Operator [61.99 h] | 133,449.82 | Z A |
|  | 4 | **Testing** |  | 2027-04-28 | 2027-05-11 |  |  |  |  |  |  |  |  |  |  |
| SDR-2-CON-ST-ZA-5210 |  | Testing for Catch basin pipe | 12d | 2027-04-28 | 2027-05-11 | SDR-2-CON-ST-ZA-5200 |  |  |  |  | 13d | 0d | SIC- Cost [69655.4]; Plumbing Helper [95.54 h]; Loader [65.71 h]; Labor [25.6 h]; Plumber [95.54 h]; Excavator [6 h]; Excavator Operator [119.42 h] | 29,655.52 | Z A |
|  | 5 | **Backfilling** |  | 2027-05-03 | 2027-05-24 |  |  |  |  |  |  |  |  |  |  |
| SDR-2-CON-ST-ZA-5220 |  | Backfilling for Catch basin Section 2 | 14d | 2027-05-03 | 2027-05-24 | SDR-2-CON-ST-ZA-7060 SS |  |  |  |  | 13d | 8d | SIC- Cost [69655.4]; Dump Truck [150 h]; Loader [42.92 h]; Labor [25.6 h]; Plumber [40.13 h]; Excavator [47.72 h]; Excavator Operator [149.25 h]; Grader [62.19 h] | 29,655.42 | Z A |
| SDR-2-CON-ST-ZA-7060 |  | Backfilling for Catch basin Section 1 | 13d | 2027-05-03 | 2027-05-23 | SDR-2-CON-ST-ZA-5210 SS+4d |  |  |  |  | 13d | 0d | SIC- Cost [69655.4]; Dump Truck [550 h]; Loader [36.27 h]; Labor [25.6 h]; Plumber [97.23 h]; Excavator [67.51 h]; Excavator Operator [119.02 h]; Grader [61.63 h] | 29,655.42 | Z A |
|  | 19 | **STORM WATER LINE From IP A7 To Pond A** |  | 2026-08-12 | 2027-05-06 |  |  |  |  |  |  |  |  |  |  |
|  | 8 | **Pipes Works** |  | 2026-08-12 | 2027-02-07 |  |  |  |  |  |  |  |  |  |  |
|  | 1 | **Excavation** |  | 2026-08-12 | 2026-11-01 |  |  |  |  |  |  |  |  |  |  |
| SDR-2-CON-ST-ZA-5830 |  | Excavation for GRP Pipes Section 2 | 21d | 2026-08-12 A | 2026-11-01 | SDR-2-CON-ST-ZA-6630 FF | 90% | 1d | 2026-09-16 | 2026-10-11 | 5d | 0d | SIC- Cost [9218]; Labor [44.81 h]; Plumber [382.14 h]; Excavator [20 h]; Excavator Operator [477.68 h] | 184,935.67 | Z A |
| SDR-2-CON-ST-ZA-6630 |  | Excavation for GRP Pipes Section 1 | 21d | 2026-08-12 A | 2026-11-01 | SDR-2-CON-ST-ZA-6600 SS+4d | 90% | 1d | 2026-08-19 | 2026-09-12 | 5d | 0d | SIC- Cost; Labor [44.81 h]; Plumber [115.59 h]; Excavator [20 h]; Excavator Operator [19.26 h] | 184,935.67 | Z A |
|  | 7 | **bedding Works** |  | 2026-11-02 | 2026-11-25 |  |  |  |  |  |  |  |  |  |  |
| SDR-2-CON-ST-ZA-5890 |  | Sand bedding for GRP Pipes | 21d | 2026-11-02 | 2026-11-25 | SDR-2-CON-ST-ZA-5830 |  |  |  |  | 5d | 0d | SIC- Cost; Labor [44.81 h]; Plumber [81.48 h]; Excavator [12.44 h]; Excavator Operator [12.52 h]; Dumper Truck [60 h]; Loader [10 h] | 92,467.85 | Z A |
|  | 2 | **Pipes Laying** |  | 2026-11-26 | 2026-12-20 |  |  |  |  |  |  |  |  |  |  |
| SDR-2-CON-ST-ZA-5840 |  | Install ST GRP Pipes | 21d | 2026-11-26 | 2026-12-20 | SDR-2-CON-ST-ZA-5890 |  |  |  |  | 5d | 0d | Pipe Fitter [81.48 h]; SIC- Cost; Labor [51.21 h]; Plumber [81.48 h]; Excavator [15.31 h]; Excavator Operator [81.48 h] | 832,210.54 | Z A |
|  | 6 | **Testing** |  | 2026-12-21 | 2027-01-13 |  |  |  |  |  |  |  |  |  |  |
| SDR-2-CON-ST-ZA-5880 |  | Testing ST GRP Pipes | 21d | 2026-12-21 | 2027-01-13 | SDR-2-CON-ST-ZA-5840 |  |  |  |  | 5d | 0d | SIC- Cost; Plumbing Helper [114.64 h]; Labor [12.8 h]; Plumber [114.64 h]; Excavator [13.83 h]; Excavator Operator [81.48 h] | 184,935.67 | Z A |
|  | 3 | **Backfilling** |  | 2027-01-14 | 2027-02-07 |  |  |  |  |  |  |  |  |  |  |
| SDR-2-CON-ST-ZA-5850 |  | Backfilling ST GRP Pipes | 21d | 2027-01-14 | 2027-02-07 | SDR-2-CON-ST-ZA-5880 |  |  |  |  | 5d | 0d | SIC- Cost; Labor [12.8 h]; Plumber [40.74 h]; Excavator [14.79 h]; Excavator Operator [40.74 h] | 369,871.34 | Z A |
|  | 4 | **Manholes** |  | 2026-11-01 | 2027-04-05 |  |  |  |  |  |  |  |  |  |  |
|  | 1 | **Excavation** |  | 2026-11-01 | 2026-12-22 |  |  |  |  |  |  |  |  |  |  |
| SDR-2-CON-ST-ZA-6640 |  | Excavation Manholes Section 1 | 21d | 2026-11-01 | 2026-11-24 | SDR-2-CON-ST-ZA-6630 SS |  |  |  |  | 10d | 0d | SIC- Cost; Labor [6.4 h]; Plumber [134.85 h]; Excavator [20 h]; Excavator Operator [19.26 h] | 13,188.55 | Z A |
| SDR-2-CON-ST-ZA-5860 |  | Excavation Manholes Section 2 | 21d | 2026-11-29 | 2026-12-22 | SDR-2-CON-ST-ZA-6640 FS+3d |  |  |  |  | 10d | 0d | SIC- Cost [18560]; Labor [6.4 h]; Plumber [277.05 h]; Excavator [20 h]; Excavator Operator [346.32 h] | 13,188.55 | Z A |

| ID | WBS | Activity | Duration | Start | Finish | Predecessors | Complete | Planned start | Planned finish | Total float | Free float | Resources | Cost | ZONE A |
| --- | --- | --- | --- | --- | --- | --- | --- | --- | --- | --- | --- | --- | --- | --- |
|  | 2 | **bedding Works** |  | 2026-12-23 | 2027-01-16 |  |  |  |  |  |  |  |  |  |
| SDR-2-CON-ST-ZA-5900 |  | Sand bedding for Manholes | 21d | 2026-12-23 | 2027-01-16 | SDR-2-CON-ST-ZA-5860 |  |  |  | 10d | 0d | SIC- Cost [18560]; Labor [6.4 h]; Plumber [96.32 h]; Excavator [6.58 h]; Excavator Operator [6.74 h]; Dumper Truck [100 h]; Loader [10 h] | 17,584.75 | Z A |
|  | 3 | **Install Manholes** |  | 2027-01-17 | 2027-02-09 |  |  |  |  |  |  |  |  |  |
| SDR-2-CON-ST-ZA-5910 |  | Manholes Installation | 21d | 2027-01-17 | 2027-02-09 | SDR-2-CON-ST-ZA-5900 |  |  |  | 10d | 0d | SIC- Cost [18560]; Plumbing Helper [191.07 h]; Labor [6.4 h]; Plumber [191.07 h]; Excavator [12.5 h]; Excavator Operator [238.84 h] | 79,131.33 | Z A |
|  | 4 | **Testing** |  | 2027-02-10 | 2027-03-07 |  |  |  |  |  |  |  |  |  |
| SDR-2-CON-ST-ZA-5920 |  | Testing for Manholes | 21d | 2027-02-10 | 2027-03-07 | SDR-2-CON-ST-ZA-5910 |  |  |  | 10d | 0d | SIC- Cost [18560]; Plumbing Helper [95.54 h]; Labor [6.4 h]; Plumber [95.54 h]; Excavator [6 h]; Excavator Operator [6.03 h] | 17,584.75 | Z A |
|  | 5 | **Backfilling** |  | 2027-03-08 | 2027-04-05 |  |  |  |  |  |  |  |  |  |
| SDR-2-CON-ST-ZA-5930 |  | Backfilling for Manholes | 21d | 2027-03-08 | 2027-04-05 | SDR-2-CON-ST-ZA-5920 |  |  |  | 10d | 6d | SIC- Cost [18560]; Labor [6.4 h]; Plumber [267.5 h]; Excavator [5 h]; Excavator Operator [334.38 h] | 35,169.48 | Z A |
|  | 5 | **Catch basin** |  | 2026-12-21 | 2027-05-06 |  |  |  |  |  |  |  |  |  |
|  | 1 | **Excavation** |  | 2026-12-21 | 2027-02-07 |  |  |  |  |  |  |  |  |  |
| SDR-2-CON-ST-ZA-6650 |  | Excavation for Catch basin Section 1 | 21d | 2026-12-21 | 2027-01-13 | SDR-2-CON-ST-ZA-6560 |  |  |  | 4d | 0d | SIC- Cost [55598.8]; Labor [19.2 h]; Plumber [115.59 h]; Excavator [13.15 h]; Excavator Operator [13.49 h] | 22,241.64 | Z A |
| SDR-2-CON-ST-ZA-5870 |  | Excavation for Catch basin Section 2 | 21d | 2027-01-14 | 2027-02-07 | SDR-2-CON-ST-ZA-6650 |  |  |  | 4d | 0d | SIC- Cost [55598.8]; Labor [19.2 h]; Plumber [286.61 h]; Excavator [5 h]; Excavator Operator [358.26 h] | 22,241.64 | Z A |
|  | 2 | **bedding Works** |  | 2027-02-08 | 2027-03-04 |  |  |  |  |  |  |  |  |  |
| SDR-2-CON-ST-ZA-5940 |  | Sand Dedding for Catch basin | 21d | 2027-02-08 | 2027-03-04 | SDR-2-CON-ST-ZA-5870 |  |  |  | 4d | 0d | SIC- Cost [69655.4]; Labor [25.6 h]; Plumber [238.84 h]; Excavator [6.23 h]; Excavator Operator [298.55 h]; Dumper Truck [1129.42 h]; Loader [30.99 h] | 29,655.52 | Z A |
|  | 3 | **Install Catch basin** |  | 2027-03-06 | 2027-04-03 |  |  |  |  |  |  |  |  |  |
| SDR-2-CON-ST-ZA-5950 |  | Install Catch basin | 21d | 2027-03-06 | 2027-04-03 | SDR-2-CON-ST-ZA-5940 |  |  |  | 4d | 0d | SIC- Cost [69655.4]; Plumbing Helper [229.29 h]; Labor [25.6 h]; Plumber [229.29 h]; Excavator [14.44 h]; Excavator Operator [286.61 h] | 133,449.82 | Z A |
|  | 4 | **Testing** |  | 2027-04-04 | 2027-04-12 |  |  |  |  |  |  |  |  |  |
| SDR-2-CON-ST-ZA-5960 |  | Testing for Catch basin pipe | 8d | 2027-04-04 | 2027-04-12 | SDR-2-CON-ST-ZA-5950 |  |  |  | 4d | 0d | SIC- Cost [69655.4]; Plumbing Helper [114.64 h]; Dump Truck [300 h]; Loader [40 h]; Labor [25.6 h]; Plumber [114.64 h]; Excavator [6 h]; Excavator Operator [143.3 h]; Grader [60 h] | 29,655.52 | Z A |
|  | 5 | **Backfilling** |  | 2027-04-13 | 2027-05-06 |  |  |  |  |  |  |  |  |  |
| SDR-2-CON-ST-ZA-5970 |  | Backfilling for Catch basin | 21d | 2027-04-13 | 2027-05-06 | SDR-2-CON-ST-ZA-5960, SDR-2-CON-ST-ZA-5930, SDR-2-CON-ST-ZA-5180 |  |  |  | 4d |  | SIC- Cost [69655.4]; Labor [25.6 h]; Plumber [191.07 h]; Excavator [8 h]; Excavator Operator [67.52 h] | 59,310.84 | Z A |
|  | 2 | **Concrete Box culverts** |  | 2026-07-01 | 2026-12-28 |  |  |  |  |  |  |  |  |  |
|  | 6 | **For Pond A** |  | 2026-07-01 | 2026-11-24 |  |  |  |  |  |  |  |  |  |
|  | 1 | **Excavation** |  | 2026-07-01 | 2026-07-15 |  |  |  |  |  |  |  |  |  |
| SDR-2-CON-ST-ZA-3270 |  | Excavation for Box Culvert. | 10d | 2026-07-01 A | 2026-07-15 A | SDR-2-CON-ST-ZA-5080 SS, SDR-2-CON-ST-ZA-6140 | 100% | 2026-09-08 | 2026-09-19 |  |  | SIC- Cost [10]; Labor [51.21 h]; Plumber [76.43 h]; Excavator [20 h]; Excavator Operator [95.54 h] | 12,051.9 | Z A |

| ID | WBS | Activity | Duration | Start | Finish | Predecessors | Complete | Planned start | Planned finish | Total float | Free float | Resources | Cost | ZONE A |
| --- | --- | --- | --- | --- | --- | --- | --- | --- | --- | --- | --- | --- | --- | --- |
|  | 2 | **Backfilling with common / suitable excavated material** |  | 2026-07-02 | 2026-07-20 |  |  |  |  |  |  |  |  |  |
| SDR-2-CON-ST-ZA-3280 |  | Backfilling with common / suitable excavated material or with suitable imported material | 8d | 2026-07-02 A | 2026-07-20 A | SDR-2-CON-ST-ZA-3270 | 100% | 2026-09-20 | 2026-09-29 |  |  | SIC- Cost [5]; Labor [25.6 h]; Plumber [38.21 h]; Excavator [271.5 h]; Excavator Operator [47.77 h] | 1,573.66 | Z A |
|  | 3 | **Plain Concrete** |  | 2026-11-01 | 2026-11-07 |  |  |  |  |  |  |  |  |  |
| SDR-2-CON-ST-ZA-3290 |  | Plain Concrete for box culvert | 6d | 2026-11-01 | 2026-11-07 | SDR-2-CON-ST-ZA-3280 |  |  |  | 33d | 0d | SIC- Cost [5]; Labor [25.6 h]; Plumber [38.21 h]; Excavator [10 h]; Excavator Operator [47.77 h] | 4,964.84 | Z A |
|  | 4 | **Steel Reinforcement** |  | 2026-11-08 | 2026-11-16 |  |  |  |  |  |  |  |  |  |
| SDR-2-CON-ST-ZA-3300 |  | Steel Reinforcement for box culverts | 8d | 2026-11-08 | 2026-11-16 | SDR-2-CON-ST-ZA-3290 |  |  |  | 33d | 0d | SIC- Cost [10]; Labor [51.21 h]; Plumber [76.43 h]; Excavator [14 h]; Excavator Operator [95.54 h] | 50,961.49 | Z A |
|  | 5 | **Reinforced Concrete** |  | 2026-11-17 | 2026-11-24 |  |  |  |  |  |  |  |  |  |
| SDR-2-CON-ST-ZA-3310 |  | Reinforced Concrete for box culvert | 7d | 2026-11-17 | 2026-11-24 | SDR-2-CON-ST-ZA-3300 |  |  |  | 33d | 18d | SIC- Cost [9]; Labor [44.81 h]; Plumber [66.88 h]; Excavator [273.49 h]; Excavator Operator [83.59 h] | 85,585.3 | Z A |
|  | 7 | **For Pond B** |  | 2026-07-01 | 2026-12-03 |  |  |  |  |  |  |  |  |  |
|  | 1 | **Excavation** |  | 2026-07-01 | 2026-07-20 |  |  |  |  |  |  |  |  |  |
| SDR-2-CON-ST-ZA-6250 |  | Excavation for Box Culvert. | 10d | 2026-07-01 A | 2026-07-20 A | SDR-2-CON-RW-ZA-2870 | 100% | 2026-07-13 | 2026-07-23 |  |  | SIC- Cost [10]; Labor [51.21 h]; Plumber [76.43 h]; Excavator [20 h]; Excavator Operator [95.54 h] | 8,034.6 | Z A |
|  | 2 | **Backfilling with common / suitable excavated material** |  | 2026-11-01 | 2026-11-09 |  |  |  |  |  |  |  |  |  |
| SDR-2-CON-ST-ZA-6260 |  | Backfilling with common / suitable excavated material or with suitable imported material | 8d | 2026-11-01 | 2026-11-09 | SDR-2-CON-ST-ZA-6250 |  |  |  | 19d | 0d | SIC- Cost [5]; Labor [25.6 h]; Plumber [38.21 h]; Excavator [14 h]; Excavator Operator [47.77 h] | 1,049.1 | Z A |
|  | 3 | **Plain Concrete** |  | 2026-11-10 | 2026-11-16 |  |  |  |  |  |  |  |  |  |
| SDR-2-CON-ST-ZA-6270 |  | Plain Concrete for box culvert | 6d | 2026-11-10 | 2026-11-16 | SDR-2-CON-ST-ZA-6260 |  |  |  | 19d | 0d | SIC- Cost [5]; Labor [25.6 h]; Plumber [38.21 h]; Excavator [14 h]; Excavator Operator [47.77 h] | 3,309.9 | Z A |
|  | 4 | **Steel Reinforcement** |  | 2026-11-17 | 2026-11-25 |  |  |  |  |  |  |  |  |  |
| SDR-2-CON-ST-ZA-6280 |  | Steel Reinforcement for box culverts | 8d | 2026-11-17 | 2026-11-25 | SDR-2-CON-ST-ZA-6270 |  |  |  | 19d | 0d | SIC- Cost [10]; Labor [51.21 h]; Plumber [76.43 h]; Excavator [15.55 h]; Excavator Operator [95.54 h] | 33,974.33 | Z A |
|  | 5 | **Reinforced Concrete** |  | 2026-11-26 | 2026-12-03 |  |  |  |  |  |  |  |  |  |
| SDR-2-CON-ST-ZA-6290 |  | Reinforced Concrete for box culvert | 7d | 2026-11-26 | 2026-12-03 | SDR-2-CON-ST-ZA-6280 |  |  |  | 19d | 0d | SIC- Cost [9]; Labor [44.81 h]; Plumber [66.88 h]; Excavator [6 h]; Excavator Operator [83.59 h] | 57,056.87 | Z A |
|  | 8 | **For Pond C** |  | 2026-11-04 | 2026-12-28 |  |  |  |  |  |  |  |  |  |
|  | 1 | **Excavation** |  | 2026-11-04 | 2026-11-15 |  |  |  |  |  |  |  |  |  |
| SDR-2-CON-ST-ZA-6300 |  | Excavation for Box Culvert. | 10d | 2026-11-04 | 2026-11-15 | SDR-2-CON-ST-ZA-3320 SS |  |  |  | 15d | 0d | SIC- Cost [10]; Labor [51.21 h]; Plumber [76.43 h]; Excavator [14 h]; Excavator Operator [13.49 h] | 6,695.51 | Z A |
|  | 2 | **Backfilling with common / suitable excavated material** |  | 2026-11-16 | 2026-11-24 |  |  |  |  |  |  |  |  |  |
| SDR-2-CON-ST-ZA-6310 |  | Backfilling with common / suitable excavated material or with suitable imported material | 8d | 2026-11-16 | 2026-11-24 | SDR-2-CON-ST-ZA-6300 |  |  |  | 15d | 0d | SIC- Cost [5]; Labor [25.6 h]; Plumber [38.21 h]; Excavator [14 h]; Excavator Operator [47.77 h] | 874.25 | Z A |

| ID | WBS | Activity | Duration | Start | Finish | Predecessors | Complete | Remaining | Planned start | Planned finish | Total float | Free float | Resources | Cost | ZONE A |
| --- | --- | --- | --- | --- | --- | --- | --- | --- | --- | --- | --- | --- | --- | --- | --- |
|  | 3 | **Plain Concrete** |  | 2026-11-25 | 2026-12-01 |  |  |  |  |  |  |  |  |  |  |
| SDR-2-CON-ST-ZA-6320 |  | Plain Concrete for box culvert | 6d | 2026-11-25 | 2026-12-01 | SDR-2-CON-ST-ZA-6310 |  |  |  |  | 15d | 0d | SIC- Cost [5]; Labor [25.6 h]; Plumber [38.21 h]; Excavator [20 h]; Excavator Operator [47.77 h] | 2,758.25 | Z A |
|  | 4 | **Steel Reinforcement** |  | 2026-12-02 | 2026-12-10 |  |  |  |  |  |  |  |  |  |  |
| SDR-2-CON-ST-ZA-6330 |  | Steel Reinforcement for box culverts | 8d | 2026-12-02 | 2026-12-10 | SDR-2-CON-ST-ZA-6320 |  |  |  |  | 15d | 0d | SIC- Cost [10]; Labor [51.21 h]; Plumber [76.43 h]; Excavator [6 h]; Excavator Operator [95.54 h] | 28,311.94 | Z A |
|  | 5 | **Reinforced Concrete** |  | 2026-12-21 | 2026-12-28 |  |  |  |  |  |  |  |  |  |  |
| SDR-2-CON-ST-ZA-6340 |  | Reinforced Concrete for box culvert | 7d | 2026-12-21 | 2026-12-28 | SDR-2-CON-ST-ZA-6330 FS+8d, SDR-2-CON-ST-ZA-6290 FS+6d, SDR-2-CON-ST-ZA-3310 FS+4d |  |  |  |  | 15d | 0d | SIC- Cost [9]; Labor [44.81 h]; Plumber [66.88 h]; Excavator [6 h]; Excavator Operator [83.59 h] | 47,547.39 | Z A |
|  | 3 | **Drainage works for ponds and open canals** |  | 2026-03-24 | 2027-04-26 |  |  |  |  |  |  |  |  |  |  |
|  | 7 | **Pond A** |  | 2026-03-24 | 2027-01-19 |  |  |  |  |  |  |  |  |  |  |
|  | 2 | **Access road for Storm water Ponds** |  | 2026-03-24 | 2026-03-30 |  |  |  |  |  |  |  |  |  |  |
| SDR-2-CON-ST-ZA-6140 |  | Embankments with common / suitable excavated material | 16d | 2026-03-24 A | 2026-03-30 A | SDR-2-CON-RW-ZA-1010 | 100% |  | 2026-03-30 | 2026-04-16 |  |  | SIC- Cost [9]; Labor [44.81 h]; Plumber [57.32 h]; Excavator; Excavator Operator [71.65 h] | 13,884.64 | Z A |
|  | 1 | **Excavation** |  | 2026-03-26 | 2026-06-22 |  |  |  |  |  |  |  |  |  |  |
| SDR-2-CON-ST-ZA-6660 |  | Excavation for cutting material Section 1 | 20d | 2026-03-26 A | 2026-05-02 A | SDR-2-CON-ST-ZA-6140 | 100% |  | 2026-04-18 | 2026-05-10 |  |  | SIC- Cost [8]; Labor [38.41 h]; Plumber [57.32 h]; Excavator [20 h]; Excavator Operator [71.65 h] | 147,071.76 | Z A |
| SDR-2-CON-ST-ZA-6670 |  | Excavation for cutting material Section 2 | 20d | 2026-05-03 A | 2026-05-24 A | SDR-2-CON-ST-ZA-6660 | 100% |  | 2026-05-11 | 2026-06-07 |  |  | SIC- Cost [8]; Labor [38.41 h]; Plumber [57.32 h]; Excavator [20 h]; Excavator Operator [71.65 h] | 196,095.69 | Z A |
| SDR-2-CON-ST-ZA-6680 |  | Excavation for cutting material Section 3 | 20d | 2026-05-31 A | 2026-06-14 A | SDR-2-CON-ST-ZA-6670 | 100% |  | 2026-06-08 | 2026-06-30 |  |  | SIC- Cost [8]; Labor [38.41 h]; Plumber [57.32 h]; Excavator [20 h]; Excavator Operator [19.26 h] | 294,143.52 | Z A |
| SDR-2-CON-ST-ZA-6130 |  | Excavation for cutting material Section 4 | 20d | 2026-06-09 A | 2026-06-22 A | SDR-2-CON-ST-ZA-6680 | 100% |  | 2026-07-01 | 2026-07-23 |  |  | SIC- Cost [8]; Labor [38.41 h]; Plumber [57.32 h]; Excavator [20 h]; Excavator Operator [71.65 h] | 343,167.45 | Z A |
|  | 3 | **Sand lining for pond bed** |  | 2026-08-31 | 2026-12-01 |  |  |  |  |  |  |  |  |  |  |
| SDR-2-CON-ST-ZA-6690 |  | Sand lining for pond bed Section 1 & Section 2 | 21d | 2026-08-31 A | 2026-11-03 | SDR-2-CON-ST-ZA-6130, SDR-2-CON-ST-ZA-6710 | 30% | 3d | 2026-07-25 | 2026-08-17 | 36d | 0d | SIC- Cost [6]; Labor [32 h]; Plumber [47.77 h]; Excavator [14 h]; Excavator Operator [59.71 h]; Dumper Truck [62.5 h]; Loader [38.45 h] | 237,419.16 | Z A |
| SDR-2-CON-ST-ZA-6150 |  | Sand lining for pond bed Section 3 & Section 4 | 21d | 2026-11-08 | 2026-12-01 | SDR-2-CON-ST-ZA-6690 FS+3d |  |  |  |  | 36d | 0d | SIC- Cost [6]; Labor [32 h]; Plumber [47.77 h]; Excavator [14 h]; Excavator Operator [59.71 h]; Dumper Truck [62.5 h]; Loader [45.12 h] | 237,419.16 | Z A |
|  | 6 | **Pipe Encasements,** |  | 2026-12-02 | 2026-12-26 |  |  |  |  |  |  |  |  |  |  |
| SDR-2-CON-ST-ZA-6180 |  | Pipe encasement | 21d | 2026-12-02 | 2026-12-26 | SDR-2-CON-ST-ZA-6150 |  |  |  |  | 36d | 0d | SIC- Cost [10]; Labor [40.74 h]; Plumber [57.32 h]; Excavator [23.28 h]; Excavator Operator [40.74 h] | 11,538.07 | Z A |
|  | 5 | **Concrete Outfalls** |  | 2026-12-27 | 2027-01-19 |  |  |  |  |  |  |  |  |  |  |
| SDR-2-CON-ST-ZA-6170 |  | Concrete Outfall structure. | 21d | 2026-12-27 | 2027-01-19 | SDR-2-CON-ST-ZA-6180 |  |  |  |  | 36d | 0d | SIC- Cost [10]; Labor [51.21 h]; Plumber [47.77 h]; Excavator [13.97 h]; Excavator Operator [59.71 h] | 25,485.6 | Z A |
|  | 4 | **Loose Riprap** |  | 2026-07-20 | 2026-07-30 |  |  |  |  |  |  |  |  |  |  |
| SDR-2-CON-ST-ZA-6160 |  | Loose Riprap work | 21d | 2026-07-20 A | 2026-07-30 A | SDR-2-CON-ST-ZA-6170 | 100% |  | 2026-11-04 | 2026-11-28 |  |  | SIC- Cost [10]; Labor [51.21 h]; Plumber [47.77 h]; Excavator [18.74 h]; Excavator Operator [59.71 h]; Water Tanker [197.5 h] | 1,261,760.13 | Z A |

| ID | WBS | Activity | Duration | Start | Finish | Predecessors | Complete | Remaining | Planned start | Planned finish | Total float | Free float | Resources | Cost | ZONE A |
| --- | --- | --- | --- | --- | --- | --- | --- | --- | --- | --- | --- | --- | --- | --- | --- |
|  | 8 | **Pond B** |  | 2026-03-25 | 2027-04-26 |  |  |  |  |  |  |  |  |  |  |
|  | 2 | **Access road for Storm water Ponds** |  | 2026-03-25 | 2026-03-30 |  |  |  |  |  |  |  |  |  |  |
| SDR-2-CON-ST-ZA-6200 |  | Embankments with common / suitable excavated material | 15d | 2026-03-25 A | 2026-03-30 A | SDR-2-CON-ST-ZA-6140 FS+12d | 100% |  | 2026-05-02 | 2026-05-18 |  |  | SIC- Cost [9]; Labor [44.81 h]; Plumber [57.32 h]; Excavator [20 h]; Excavator Operator [71.65 h] | 9,256.42 | Z A |
|  | 1 | **Excavation** |  | 2026-03-29 | 2026-06-23 |  |  |  |  |  |  |  |  |  |  |
| SDR-2-CON-ST-ZA-6700 |  | Excavation for cutting material. Section 1 | 21d | 2026-03-29 A | 2026-05-02 A | SDR-2-CON-ST-ZA-6200 | 100% |  | 2026-05-19 | 2026-06-16 |  |  | SIC- Cost [8]; Labor [38.41 h]; Plumber [57.32 h]; Excavator [20 h]; Excavator Operator [19.26 h] | 163,413.07 | Z A |
| SDR-2-CON-ST-ZA-6710 |  | Excavation for cutting material. Section 2 | 21d | 2026-05-04 A | 2026-05-31 A | SDR-2-CON-ST-ZA-6700 | 100% |  | 2026-06-17 | 2026-07-11 |  |  | SIC- Cost [8]; Labor [38.41 h]; Plumber [57.32 h]; Excavator [20 h]; Excavator Operator [71.65 h] | 228,778.3 | Z A |
| SDR-2-CON-ST-ZA-6190 |  | Excavation for cutting material. Section 3 | 21d | 2026-06-02 A | 2026-06-23 A | SDR-2-CON-ST-ZA-6710 FS+7d | 100% |  | 2026-07-20 | 2026-08-12 |  |  | SIC- Cost [8]; Labor [38.41 h]; Plumber [57.32 h]; Excavator [20 h]; Excavator Operator [71.65 h] | 261,460.91 | Z A |
|  | 3 | **Sand lining for pond bed** |  | 2026-08-31 | 2027-01-19 |  |  |  |  |  |  |  |  |  |  |
| SDR-2-CON-ST-ZA-6720 |  | Sand lining for pond bed Section 1 | 21d | 2026-08-31 A | 2026-12-28 | SDR-2-CON-ST-ZA-6190, SDR-2-CON-ST-ZA-6340 FF | 30% | 3d | 2026-11-03 | 2026-11-26 | 32d | 0d | SIC- Cost [6]; Labor [32 h]; Plumber [47.77 h]; Excavator [12.13 h]; Excavator Operator [59.71 h]; Dumper Truck [30 h]; Loader [30 h] | 158,279.45 | Z A |
| SDR-2-CON-ST-ZA-6210 |  | Sand lining for pond bed Section 2 | 19d | 2026-12-29 | 2027-01-19 | SDR-2-CON-ST-ZA-6720 |  |  |  |  | 32d | 0d | SIC- Cost [6]; Labor [32 h]; Plumber [47.77 h]; Excavator [12.13 h]; Excavator Operator [59.71 h]; Dumper Truck [30 h]; Loader [30 h] | 158,279.45 | Z A |
|  | 6 | **Pipe Encasements,** |  | 2027-01-20 | 2027-02-13 |  |  |  |  |  |  |  |  |  |  |
| SDR-2-CON-ST-ZA-6240 |  | Pipe encasement | 21d | 2027-01-20 | 2027-02-13 | SDR-2-CON-ST-ZA-6210 |  |  |  |  | 32d | 0d | SIC- Cost [10]; Labor [51.21 h]; Plumber [57.32 h]; Excavator [9.29 h]; Excavator Operator [40.74 h] | 7,692.04 | Z A |
|  | 5 | **Concrete Outfalls** |  | 2027-02-14 | 2027-03-15 |  |  |  |  |  |  |  |  |  |  |
| SDR-2-CON-ST-ZA-6230 |  | Concrete Outfall structure. | 21d | 2027-02-14 | 2027-03-15 | SDR-2-CON-ST-ZA-6240 |  |  |  |  | 32d | 15d | SIC- Cost [10]; Labor [51.21 h]; Plumber [47.77 h]; Excavator [12.39 h]; Excavator Operator [59.71 h]; Water Tanker [237.25 h] | 16,990.4 | Z A |
|  | 4 | **Loose Riprap** |  | 2027-04-03 | 2027-04-26 |  |  |  |  |  |  |  |  |  |  |
| SDR-2-CON-ST-ZA-6220 |  | Loose Riprap work | 21d | 2027-04-03 | 2027-04-26 | SDR-2-CON-ST-ZA-6230, SDR-2-CON-ST-ZA-5180, SDR-2-CON-ST-ZA-5030 FS+9d, SDR-2-CON-ST-ZA-4880 FS+14d, SDR-2-CON-ST-ZA-4730 FS+7d, SDR-2-CON-ST-ZA-4580 FS+5d, SDR-2-CON-ST-ZA-4280 FS+14d, SDR-2-CON-ST-ZA-4130, SDR-2-CON-ST-ZA-3760 FF |  |  |  |  | 17d | 0d | SIC- Cost [10]; Labor [51.21 h]; Plumber [47.77 h]; Excavator [13.59 h]; Excavator Operator [59.71 h] | 841,173.42 | Z A |
|  | 9 | **Pond C** |  | 2026-04-09 | 2027-04-03 |  |  |  |  |  |  |  |  |  |  |
|  | 2 | **Access road for Storm water Ponds** |  | 2026-04-27 | 2026-07-20 |  |  |  |  |  |  |  |  |  |  |
| SDR-2-CON-ST-ZA-3330 |  | Embankments with common / suitable excavated material | 15d | 2026-04-27 A | 2026-07-20 A | SDR-2-CON-ST-ZA-6200 | 100% |  | 2026-05-19 | 2026-06-09 |  |  | SIC- Cost [9]; Labor [44.81 h]; Plumber [57.32 h]; Excavator [282 h]; Excavator Operator [19.26 h] | 544,710.22 | Z A |
|  | 1 | **Excavation** |  | 2026-04-09 | 2026-11-28 |  |  |  |  |  |  |  |  |  |  |
| SDR-2-CON-ST-ZA-6730 |  | Excavation for cutting material. Section 1 | 21d | 2026-04-09 A | 2026-04-22 A | SDR-2-CON-ST-ZA-3330 | 100% |  | 2026-06-10 | 2026-07-04 |  |  | SIC- Cost [8]; Labor [38.41 h]; Plumber [57.32 h]; Excavator [20 h]; Excavator Operator [71.65 h] | 1,928.42 | Z A |
| SDR-2-CON-ST-ZA-6740 |  | Excavation for cutting material. Section 2 | 21d | 2026-08-31 A | 2026-11-03 | SDR-2-CON-ST-ZA-6730 | 25% | 3d | 2026-07-08 | 2026-08-01 | 4d | 0d | SIC- Cost [8]; Labor [38.41 h]; Plumber [57.32 h]; Excavator [20 h]; Excavator Operator [71.65 h] | 2,699.79 | Z A |
| SDR-2-CON-ST-ZA-3320 |  | Excavation for cutting material. Section 3 | 21d | 2026-11-04 | 2026-11-28 | SDR-2-CON-ST-ZA-6740 |  |  |  |  | 4d | 0d | SIC- Cost [8]; Labor [38.41 h]; Plumber [57.32 h]; Excavator [62.86 h]; Excavator Operator [71.65 h] | 3,085.48 | Z A |
|  | 3 | **Sand lining for pond bed** |  | 2026-11-29 | 2027-01-13 |  |  |  |  |  |  |  |  |  |  |
| SDR-2-CON-ST-ZA-6750 |  | Sand lining for pond bed Section 1 | 20d | 2026-11-29 | 2026-12-21 | SDR-2-CON-ST-ZA-3320 |  |  |  |  | 4d | 0d | SIC- Cost [6]; Labor [32 h]; Plumber [47.77 h]; Excavator [12 h]; Excavator Operator [67.9 h]; Dumper Truck [50 h]; Loader [25.62 h] | 131,899.54 | Z A |
| SDR-2-CON-ST-ZA-3340 |  | Sand lining for pond bed Section 2 &Section 3 | 20d | 2026-12-22 | 2027-01-13 | SDR-2-CON-ST-ZA-6750 |  |  |  |  | 4d | 0d | SIC- Cost [6]; Labor [32 h]; Plumber [47.77 h]; Excavator [12 h]; Excavator Operator [67.9 h]; Dumper Truck [295 h]; Loader [156.25 h] | 131,899.54 | Z A |

| ID | WBS | Activity | Duration | Start | Finish | Predecessors | Complete | Planned start | Planned finish | Total float | Free float | Resources | Cost | ZONE A | ZONE G |
| --- | --- | --- | --- | --- | --- | --- | --- | --- | --- | --- | --- | --- | --- | --- | --- |
|  | 6 | **Pipe Encasements,** |  | 2027-01-14 | 2027-02-07 |  |  |  |  |  |  |  |  |  |  |
| SDR-2-CON-ST-ZA-3370 |  | Pipe encasement | 21d | 2027-01-14 | 2027-02-07 | SDR-2-CON-ST-ZA-3340 |  |  |  | 4d | 0d | SIC- Cost [10]; Labor [8146.59 h]; Plumber [57.32 h]; Excavator [264.21 h]; Excavator Operator [71.65 h] | 6,410.04 | Z A |  |
|  | 5 | **Concrete Outfalls** |  | 2027-02-08 | 2027-03-04 |  |  |  |  |  |  |  |  |  |  |
| SDR-2-CON-ST-ZA-3360 |  | Concrete Outfall structure. | 21d | 2027-02-08 | 2027-03-04 | SDR-2-CON-ST-ZA-3370 |  |  |  | 4d | 0d | SIC- Cost [10]; Labor [8146.59 h]; Plumber [47.77 h]; Excavator [6.93 h]; Excavator Operator [59.71 h] | 14,158.67 | Z A |  |
|  | 4 | **Loose Riprap** |  | 2027-03-06 | 2027-04-03 |  |  |  |  |  |  |  |  |  |  |
| SDR-2-CON-ST-ZA-3350 |  | Loose Riprap work | 21d | 2027-03-06 | 2027-04-03 | SDR-2-CON-ST-ZA-3360 |  |  |  | 4d | 0d | SIC- Cost [10]; Labor [51.21 h]; Plumber [47.77 h]; Excavator [7.43 h]; Excavator Operator [59.71 h] | 700,979.34 | Z A |  |
|  | ZG | **ZONE G** |  | 2026-04-30 | 2026-11-10 |  |  |  |  |  |  |  |  |  |  |
|  | 11 | **STORM WATER LINE IN ( PH2-G-MCE0 )** |  | 2026-04-30 | 2026-11-03 |  |  |  |  |  |  |  |  |  |  |
|  | 8 | **Pipes Works** |  | 2026-04-30 | 2026-08-31 |  |  |  |  |  |  |  |  |  |  |
|  | 1 | **Excavation** |  | 2026-04-30 | 2026-06-08 |  |  |  |  |  |  |  |  |  |  |
| SDR-2-CON-ST-ZA-6880 |  | Excavation for GRP Pipes Section 1 | 21d | 2026-04-30 A | 2026-06-01 A | SDR-2-CON-ST-ZA-7000 SS | 100% | 2026-08-01 | 2026-08-24 |  |  | SIC- Cost [9218]; Labor [44.81 h]; Plumber [382.14 h]; Excavator [20 h]; Excavator Operator [477.68 h] | 19,499.82 |  | Z G |
| SDR-2-CON-ST-ZA-6760 |  | Excavation for GRP Pipes Section 2 | 21d | 2026-05-06 A | 2026-06-04 A | SDR-2-CON-ST-ZA-6880, SDR-2-CON-ST-ZA-6710 | 100% | 2026-08-25 | 2026-09-17 |  |  | SIC- Cost [9218]; Labor [44.81 h]; Plumber [382.14 h]; Excavator [20 h]; Excavator Operator [477.68 h] | 19,499.82 |  | Z G |
| SDR-2-CON-ST-ZA-5380 |  | Excavation for GRP Pipes Section 3 | 21d | 2026-06-04 A | 2026-06-08 A | SDR-2-CON-ST-ZA-6760 | 100% | 2026-09-19 | 2026-10-13 |  |  | SIC- Cost [9218]; Labor [44.81 h]; Plumber [382.14 h]; Excavator [20 h]; Excavator Operator [477.68 h] | 19,499.82 |  | Z G |
|  | 7 | **bedding Works** |  | 2026-05-16 | 2026-06-01 |  |  |  |  |  |  |  |  |  |  |
| SDR-2-CON-ST-ZA-5440 |  | Sand bedding for GRP Pipes | 21d | 2026-05-16 A | 2026-06-01 A | SDR-2-CON-ST-ZA-5380 | 100% | 2026-10-14 | 2026-11-07 |  |  | SIC- Cost; Labor [44.81 h]; Plumber [81.48 h]; Excavator [13.13 h]; Excavator Operator [13.49 h]; Dumper Truck [60 h]; Loader [10 h] | 14,624.87 |  | Z G |
|  | 2 | **Pipes Laying** |  | 2026-05-17 | 2026-06-18 |  |  |  |  |  |  |  |  |  |  |
| SDR-2-CON-ST-ZA-5390 |  | Install ST GRP Pipes | 21d | 2026-05-17 A | 2026-06-18 A | SDR-2-CON-ST-ZA-5440 | 100% | 2026-11-08 | 2026-12-01 |  |  | Pipe Fitter [67.9 h]; SIC- Cost; Labor [51.21 h]; Plumber [67.9 h]; Excavator [20 h]; Excavator Operator [67.9 h] | 131,623.79 |  | Z G |
|  | 6 | **Testing** |  | 2026-08-01 | 2026-08-08 |  |  |  |  |  |  |  |  |  |  |
| SDR-2-CON-ST-ZA-5430 |  | Testing ST GRP Pipes | 21d | 2026-08-01 A | 2026-08-08 A | SDR-2-CON-ST-ZA-5390 | 100% | 2026-12-02 | 2026-12-26 |  |  | SIC- Cost; Plumbing Helper [81.48 h]; Labor [12.8 h]; Plumber [81.48 h]; Excavator [6 h]; Excavator Operator [6.03 h] | 29,249.73 |  | Z G |
|  | 3 | **Backfilling** |  | 2026-08-09 | 2026-08-31 |  |  |  |  |  |  |  |  |  |  |
| SDR-2-CON-ST-ZA-5400 |  | Backfilling ST GRP Pipes | 21d | 2026-08-09 A | 2026-08-31 A | SDR-2-CON-ST-ZA-5430 | 100% | 2026-12-27 | 2027-01-19 |  |  | SIC- Cost; Labor [12.8 h]; Plumber [67.9 h]; Excavator [12.67 h]; Excavator Operator [67.9 h] | 58,499.46 |  | Z G |
|  | 4 | **Manholes** |  | 2026-05-13 | 2026-11-03 |  |  |  |  |  |  |  |  |  |  |
|  | 1 | **Excavation** |  | 2026-05-13 | 2026-06-09 |  |  |  |  |  |  |  |  |  |  |
| SDR-2-CON-ST-ZA-6890 |  | Excavation Manholes Section 1 | 21d | 2026-05-13 A | 2026-06-01 A | SDR-2-CON-ST-ZA-6880 SS | 100% | 2026-08-01 | 2026-08-24 |  |  | SIC- Cost [18560]; Labor [6.4 h]; Plumber [363.04 h]; Excavator [20 h]; Excavator Operator [453.8 h] | 4,021.91 |  | Z G |
| SDR-2-CON-ST-ZA-6770 |  | Excavation Manholes Section 2 | 21d | 2026-05-14 A | 2026-06-02 A | SDR-2-CON-ST-ZA-6890 | 100% | 2026-08-25 | 2026-09-17 |  |  | SIC- Cost [18560]; Labor [6.4 h]; Plumber [363.04 h]; Excavator [20 h]; Excavator Operator [453.8 h] | 4,021.91 |  | Z G |
| SDR-2-CON-ST-ZA-5410 |  | Excavation Manholes Section 3 | 21d | 2026-06-04 A | 2026-06-09 A | SDR-2-CON-ST-ZA-6770 FS+3d | 100% | 2026-09-22 | 2026-10-17 |  |  | SIC- Cost [18560]; Labor [6.4 h]; Plumber [363.04 h]; Excavator [20 h]; Excavator Operator [453.8 h] | 4,021.91 |  | Z G |

| ID | WBS | Activity | Duration | Start | Finish | Predecessors | Complete | Remaining | Planned start | Planned finish | Total float | Free float | Resources | Cost | ZONE G |
| --- | --- | --- | --- | --- | --- | --- | --- | --- | --- | --- | --- | --- | --- | --- | --- |
|  | 2 | **bedding Works** |  | 2026-05-18 | 2026-06-11 |  |  |  |  |  |  |  |  |  |  |
| SDR-2-CON-ST-ZA-5450 |  | Sand bedding for Manholes | 21d | 2026-05-18 A | 2026-06-11 A | SDR-2-CON-ST-ZA-5410 | 100% |  | 2026-10-18 | 2026-11-10 |  |  | SIC- Cost [18560]; Labor [6.4 h]; Plumber [96.32 h]; Excavator [6 h]; Excavator Operator [5.78 h]; Dumper Truck [187.5 h]; Loader [10 h] | 8,043.85 | Z G |
|  | 3 | **Install Manholes** |  | 2026-06-01 | 2026-07-21 |  |  |  |  |  |  |  |  |  |  |
| SDR-2-CON-ST-ZA-5460 |  | Manholes Installation Section 2 | 21d | 2026-06-01 A | 2026-07-21 A | SDR-2-CON-ST-ZA-6780 FS+5d | 100% |  | 2026-12-12 | 2027-01-04 |  |  | SIC- Cost [18560]; Plumbing Helper [238.84 h]; Labor [6.4 h]; Plumber [238.84 h]; Excavator [14.89 h]; Excavator Operator [298.55 h] | 18,098.66 | Z G |
| SDR-2-CON-ST-ZA-6780 |  | Manholes Installation Section 1 | 21d | 2026-06-01 A | 2026-06-01 A | SDR-2-CON-ST-ZA-5450 | 100% |  | 2026-11-11 | 2026-12-05 |  |  | SIC- Cost [18560]; Plumbing Helper [238.84 h]; Labor [6.4 h]; Plumber [238.84 h]; Excavator [14.89 h]; Excavator Operator [298.55 h] | 18,098.66 | Z G |
|  | 4 | **Testing** |  | 2026-08-31 | 2026-11-03 |  |  |  |  |  |  |  |  |  |  |
| SDR-2-CON-ST-ZA-5470 |  | Testing for Manholes | 21d | 2026-08-31 A | 2026-11-03 | SDR-2-CON-ST-ZA-5460 | 25% | 3d | 2027-01-05 | 2027-01-28 | 148d | 0d | SIC- Cost [18560]; Plumbing Helper [124.2 h]; Labor [6.4 h]; Plumber [124.2 h]; Excavator [20 h]; Excavator Operator [20.11 h] | 8,043.85 | Z G |
|  | 5 | **Backfilling** |  | 2026-08-16 | 2026-08-20 |  |  |  |  |  |  |  |  |  |  |
| SDR-2-CON-ST-ZA-5480 |  | Backfilling for Manholes | 21d | 2026-08-16 A | 2026-08-20 A | SDR-2-CON-ST-ZA-5470 SS | 100% |  | 2027-01-30 | 2027-02-23 |  |  | SIC- Cost [18560]; Labor [6.4 h]; Plumber [277.05 h]; Excavator [12.47 h]; Excavator Operator [45.21 h] | 16,087.7 | Z G |
|  | 5 | **Catch basin** |  | 2026-08-10 | 2026-08-27 |  |  |  |  |  |  |  |  |  |  |
|  | 1 | **Excavation** |  | 2026-08-10 | 2026-08-15 |  |  |  |  |  |  |  |  |  |  |
| SDR-2-CON-ST-ZA-5420 |  | Excavation for Catch basin Section 2 | 21d | 2026-08-10 A | 2026-08-15 A | SDR-2-CON-ST-ZA-6790 FS+3d | 100% |  | 2027-01-03 | 2027-01-26 |  |  | SIC- Cost [55598.8]; Labor [19.2 h]; Plumber [305.71 h]; Excavator [14.44 h]; Excavator Operator [382.14 h] | 22,241.64 | Z G |
| SDR-2-CON-ST-ZA-6790 |  | Excavation for Catch basin Section 1 | 21d | 2026-08-10 A | 2026-08-15 A | SDR-2-CON-ST-ZA-6890, SDR-2-CON-ST-ZA-6780 | 100% |  | 2026-12-06 | 2026-12-29 |  |  | SIC- Cost [55598.8]; Labor [19.2 h]; Plumber [305.71 h]; Excavator [14.44 h]; Excavator Operator [382.14 h] | 22,241.64 | Z G |
|  | 2 | **bedding Works** |  | 2026-08-15 | 2026-08-18 |  |  |  |  |  |  |  |  |  |  |
| SDR-2-CON-ST-ZA-5490 |  | Sand Dedding for Catch basin | 21d | 2026-08-15 A | 2026-08-18 A | SDR-2-CON-ST-ZA-5420 | 100% |  | 2027-01-27 | 2027-02-20 |  |  | SIC- Cost [69655.4]; Labor [25.6 h]; Plumber [191.07 h]; Excavator [12 h]; Excavator Operator [38.1 h]; Dumper Truck [50 h]; Loader [60 h] | 29,655.52 | Z G |
|  | 3 | **Install Catch basin** |  | 2026-08-18 | 2026-08-20 |  |  |  |  |  |  |  |  |  |  |
| SDR-2-CON-ST-ZA-5500 |  | Install Catch basin | 21d | 2026-08-18 A | 2026-08-20 A | SDR-2-CON-ST-ZA-5490 | 100% |  | 2027-02-21 | 2027-03-22 |  |  | SIC- Cost [69655.4]; Plumbing Helper [200.63 h]; Labor [25.6 h]; Plumber [200.63 h]; Excavator [16.06 h]; Excavator Operator [250.78 h] | 133,449.82 | Z G |
|  | 4 | **Testing** |  | 2026-08-18 | 2026-08-20 |  |  |  |  |  |  |  |  |  |  |
| SDR-2-CON-ST-ZA-5510 |  | Testing for Catch basin pipe | 8d | 2026-08-18 A | 2026-08-20 A | SDR-2-CON-ST-ZA-5500 | 100% |  | 2027-03-23 | 2027-03-31 |  |  | SIC- Cost [69655.4]; Plumbing Helper [114.64 h]; Labor [25.6 h]; Plumber [114.64 h]; Excavator [6 h]; Excavator Operator [143.3 h] | 29,655.52 | Z G |
|  | 5 | **Backfilling** |  | 2026-08-20 | 2026-08-27 |  |  |  |  |  |  |  |  |  |  |
| SDR-2-CON-ST-ZA-5520 |  | Backfilling for Catch basin Part 2 | 13d | 2026-08-20 A | 2026-08-27 A | SDR-2-CON-ST-ZA-6870 | 100% |  | 2027-04-17 | 2027-05-01 |  |  | SIC- Cost [69655.4]; Labor [14126.7 h]; Plumber [11447.6 h]; Excavator [92.81 h]; Excavator Operator [238.84 h]; Dumper Truck [1599 h]; Grader [104 h]; Loader [595 h] | 29,655.43 | Z G |
| SDR-2-CON-ST-ZA-6870 |  | Backfilling for Catch basin Part 1 | 13d | 2026-08-20 A | 2026-08-27 A | SDR-2-CON-ST-ZA-5510 | 100% |  | 2027-04-01 | 2027-04-15 |  |  | SIC- Cost [69655.4]; Labor [129.06 h]; Plumber [444.16 h]; Excavator [8 h]; Excavator Operator [67.52 h]; Dumper Truck [1150 h]; Grader [40 h]; Loader [340 h] | 29,655.43 | Z G |
|  | 12 | **STORM WATER LINE IN ( PH2-G-MCF0 )** |  | 2026-05-09 | 2026-11-03 |  |  |  |  |  |  |  |  |  |  |
|  | 8 | **Pipes Works** |  | 2026-05-09 | 2026-08-16 |  |  |  |  |  |  |  |  |  |  |
|  | 1 | **Excavation** |  | 2026-05-09 | 2026-05-24 |  |  |  |  |  |  |  |  |  |  |
| SDR-2-CON-ST-ZA-6800 |  | Excavation for GRP Pipes Section 1 | 21d | 2026-05-09 A | 2026-05-18 A | SDR-2-CON-ST-ZA-6880 SS+4d | 100% |  | 2026-08-05 | 2026-08-29 |  |  | SIC- Cost [9218]; Labor [44.81 h]; Plumber [334.38 h]; Excavator [20 h]; Excavator Operator [417.97 h] | 56,409.82 | Z G |
| SDR-2-CON-ST-ZA-5530 |  | Excavation for GRP Pipes Section 2 | 21d | 2026-05-18 A | 2026-05-24 A | SDR-2-CON-ST-ZA-6800 | 100% |  | 2026-08-30 | 2026-09-22 |  |  | SIC- Cost [9218]; Labor [44.81 h]; Plumber [334.38 h]; Excavator [20 h]; Excavator Operator [417.97 h] | 56,409.82 | Z G |

| ID | WBS | Activity | Duration | Start | Finish | Predecessors | Complete | Remaining | Planned start | Planned finish | Total float | Free float | Resources | Cost | ZONE G |
| --- | --- | --- | --- | --- | --- | --- | --- | --- | --- | --- | --- | --- | --- | --- | --- |
|  | 7 | **bedding Works** |  | 2026-05-18 | 2026-06-04 |  |  |  |  |  |  |  |  |  |  |
| SDR-2-CON-ST-ZA-5590 |  | Sand bedding for GRP Pipes | 21d | 2026-05-18 A | 2026-06-04 A | SDR-2-CON-ST-ZA-5530 | 100% |  | 2026-09-24 | 2026-10-18 |  |  | SIC- Cost; Labor [44.81 h]; Plumber [248.39 h]; Excavator [12 h]; Excavator Operator [81.48 h]; Dumper Truck [60 h]; Loader [21.43 h] | 28,204.88 | Z G |
|  | 2 | **Pipes Laying** |  | 2026-06-04 | 2026-07-12 |  |  |  |  |  |  |  |  |  |  |
| SDR-2-CON-ST-ZA-5540 |  | Install ST GRP Pipes | 21d | 2026-06-04 A | 2026-07-12 A | SDR-2-CON-ST-ZA-5590 | 100% |  | 2026-10-19 | 2026-11-11 |  |  | Pipe Fitter [81.48 h]; SIC- Cost; Labor [51.21 h]; Plumber [81.48 h]; Excavator [14.07 h]; Excavator Operator [81.48 h] | 253,844.24 | Z G |
|  | 6 | **Testing** |  | 2026-07-14 | 2026-07-20 |  |  |  |  |  |  |  |  |  |  |
| SDR-2-CON-ST-ZA-5580 |  | Testing ST GRP Pipes | 21d | 2026-07-14 A | 2026-07-20 A | SDR-2-CON-ST-ZA-5540 | 100% |  | 2026-11-12 | 2026-12-06 |  |  | SIC- Cost; Plumbing Helper [67.9 h]; Labor [12.8 h]; Plumber [67.9 h]; Excavator [10.5 h]; Excavator Operator [10.06 h] | 56,409.87 | Z G |
|  | 3 | **Backfilling** |  | 2026-08-09 | 2026-08-16 |  |  |  |  |  |  |  |  |  |  |
| SDR-2-CON-ST-ZA-5550 |  | Backfilling ST GRP Pipes | 21d | 2026-08-09 A | 2026-08-16 A | SDR-2-CON-ST-ZA-5580 | 100% |  | 2026-12-07 | 2026-12-30 |  |  | SIC- Cost; Labor [12.8 h]; Plumber [67.9 h]; Excavator [14.05 h]; Excavator Operator [67.9 h] | 112,819.63 | Z G |
|  | 4 | **Manholes** |  | 2026-05-18 | 2026-11-03 |  |  |  |  |  |  |  |  |  |  |
|  | 1 | **Excavation** |  | 2026-05-18 | 2026-06-06 |  |  |  |  |  |  |  |  |  |  |
| SDR-2-CON-ST-ZA-6810 |  | Excavation Manholes Section 1 | 21d | 2026-05-18 A | 2026-05-31 A | SDR-2-CON-ST-ZA-6800 SS | 100% |  | 2026-08-05 | 2026-08-29 |  |  | SIC- Cost [18560]; Labor [6.4 h]; Plumber [267.5 h]; Excavator [20 h]; Excavator Operator [334.38 h] | 6,032.88 | Z G |
| SDR-2-CON-ST-ZA-5560 |  | Excavation Manholes Section 2 | 21d | 2026-06-02 A | 2026-06-06 A | SDR-2-CON-ST-ZA-6810 FS+3d | 100% |  | 2026-09-02 | 2026-09-27 |  |  | SIC- Cost [18560]; Labor [6.4 h]; Plumber [267.5 h]; Excavator [20 h]; Excavator Operator [334.38 h] | 6,032.88 | Z G |
|  | 2 | **bedding Works** |  | 2026-05-23 | 2026-06-06 |  |  |  |  |  |  |  |  |  |  |
| SDR-2-CON-ST-ZA-5600 |  | Sand bedding for Manholes | 21d | 2026-05-23 A | 2026-06-06 A | SDR-2-CON-ST-ZA-5560 | 100% |  | 2026-09-28 | 2026-10-21 |  |  | SIC- Cost [18560]; Labor [6.4 h]; Plumber [115.59 h]; Excavator [12 h]; Excavator Operator [11.56 h]; Dumper Truck [175 h]; Loader [10 h] | 8,043.85 | Z G |
|  | 3 | **Install Manholes** |  | 2026-06-01 | 2026-07-20 |  |  |  |  |  |  |  |  |  |  |
| SDR-2-CON-ST-ZA-5610 |  | Manholes Installation | 21d | 2026-06-01 A | 2026-07-20 A | SDR-2-CON-ST-ZA-5600 | 100% |  | 2026-10-22 | 2026-11-15 |  |  | SIC- Cost [18560]; Plumbing Helper [229.29 h]; Labor [6.4 h]; Plumber [229.29 h]; Excavator [12 h]; Excavator Operator [20.11 h] | 36,197.31 | Z G |
|  | 4 | **Testing** |  | 2026-08-31 | 2026-11-03 |  |  |  |  |  |  |  |  |  |  |
| SDR-2-CON-ST-ZA-5620 |  | Testing for Manholes | 21d | 2026-08-31 A | 2026-11-03 | SDR-2-CON-ST-ZA-5610 FS+5d | 25% | 3d | 2026-11-22 | 2026-12-15 | 84d | 0d | SIC- Cost [18560]; Plumbing Helper [114.64 h]; Labor [6.4 h]; Plumber [114.64 h]; Excavator [15.5 h]; Excavator Operator [143.3 h] | 8,043.85 | Z G |
|  | 5 | **Backfilling** |  | 2026-08-16 | 2026-08-20 |  |  |  |  |  |  |  |  |  |  |
| SDR-2-CON-ST-ZA-5630 |  | Backfilling for Manholes | 21d | 2026-08-16 A | 2026-08-20 A | SDR-2-CON-ST-ZA-5620 SS | 100% |  | 2026-12-16 | 2027-01-09 |  |  | SIC- Cost [18560]; Labor [6.4 h]; Plumber [219.73 h]; Excavator [13.31 h]; Excavator Operator [274.67 h] | 16,087.7 | Z G |
|  | 5 | **Catch basin** |  | 2026-06-12 | 2026-08-30 |  |  |  |  |  |  |  |  |  |  |
|  | 1 | **Excavation** |  | 2026-06-12 | 2026-07-01 |  |  |  |  |  |  |  |  |  |  |
| SDR-2-CON-ST-ZA-6820 |  | Excavation for Catch basin Section 1 | 21d | 2026-06-12 A | 2026-07-01 A | SDR-2-CON-ST-ZA-5610 | 100% |  | 2026-11-16 | 2026-12-09 |  |  | SIC- Cost [55598.8]; Labor [19.2 h]; Plumber [334.38 h]; Excavator [14.44 h]; Excavator Operator [417.97 h] | 22,241.64 | Z G |
| SDR-2-CON-ST-ZA-5570 |  | Excavation for Catch basin Section 2 | 21d | 2026-06-22 A | 2026-07-01 A | SDR-2-CON-ST-ZA-6820 | 100% |  | 2026-12-10 | 2027-01-03 |  |  | SIC- Cost [55598.8]; Labor [19.2 h]; Plumber [334.38 h]; Excavator [14.44 h]; Excavator Operator [417.97 h] | 22,241.64 | Z G |

| ID | WBS | Activity | Duration | Start | Finish | Predecessors | Complete | Planned start | Planned finish | Resources | Cost | ZONE G |
| --- | --- | --- | --- | --- | --- | --- | --- | --- | --- | --- | --- | --- |
|  | 2 | **bedding Works** |  | 2026-08-09 | 2026-08-12 |  |  |  |  |  |  |  |
| SDR-2-CON-ST-ZA-5640 |  | Sand Dedding for Catch basin | 21d | 2026-08-09 A | 2026-08-12 A | SDR-2-CON-ST-ZA-5570 | 100% | 2027-01-04 | 2027-01-27 | SIC- Cost [69655.4]; Labor [25.6 h]; Plumber [219.73 h]; Excavator [13.57 h]; Excavator Operator [274.67 h]; Dumper Truck [328.75 h]; Loader [52.17 h] | 29,655.52 | Z G |
|  | 3 | **Install Catch basin** |  | 2026-08-13 | 2026-08-18 |  |  |  |  |  |  |  |
| SDR-2-CON-ST-ZA-6830 |  | Install Catch basin Section 1 | 21d | 2026-08-13 A | 2026-08-16 A | SDR-2-CON-ST-ZA-5640 | 100% | 2027-01-28 | 2027-02-21 | SIC- Cost [69655.4]; Plumbing Helper [248.39 h]; Labor [25.6 h]; Plumber [248.39 h]; Excavator [20 h]; Excavator Operator [310.49 h] | 66,724.91 | Z G |
| SDR-2-CON-ST-ZA-5650 |  | Install Catch basin Section 2 | 21d | 2026-08-16 A | 2026-08-18 A | SDR-2-CON-ST-ZA-6830, SDR-2-CON-ST-ZA-5640, SDR-2-CON-ST-ZA-5400 FS+4d, SDR-2-CON-ST-ZA-5550 | 100% | 2027-02-23 | 2027-03-23 | SIC- Cost [69655.4]; Plumbing Helper [248.39 h]; Labor [25.6 h]; Plumber [248.39 h]; Excavator [20 h]; Excavator Operator [310.49 h] | 66,724.91 | Z G |
|  | 4 | **Testing** |  | 2026-08-18 | 2026-08-19 |  |  |  |  |  |  |  |
| SDR-2-CON-ST-ZA-5660 |  | Testing for Catch basin pipe | 21d | 2026-08-18 A | 2026-08-19 A | SDR-2-CON-ST-ZA-5650 | 100% | 2027-03-24 | 2027-04-17 | SIC- Cost [69655.4]; Plumbing Helper [114.64 h]; Labor [25.6 h]; Plumber [114.64 h]; Excavator [7.17 h]; Excavator Operator [82.84 h] | 29,655.52 | Z G |
|  | 5 | **Backfilling** |  | 2026-08-20 | 2026-08-30 |  |  |  |  |  |  |  |
| SDR-2-CON-ST-ZA-5670 |  | Backfilling for Catch basin | 15d | 2026-08-20 A | 2026-08-30 A | SDR-2-CON-ST-ZA-5660 | 100% | 2027-04-18 | 2027-05-04 | SIC- Cost [69655.4]; Labor [25.6 h]; Plumber [238.84 h]; Excavator [393.52 h]; Excavator Operator [298.55 h] | 59,310.84 | Z G |
|  | 13 | **STORM WATER LINE IN ( PH2-G-MCG0 )** |  | 2026-05-08 | 2026-11-10 |  |  |  |  |  |  |  |
|  | 8 | **Pipes Works** |  | 2026-05-08 | 2026-08-17 |  |  |  |  |  |  |  |
|  | 1 | **Excavation** |  | 2026-05-08 | 2026-05-31 |  |  |  |  |  |  |  |
| SDR-2-CON-ST-ZA-6840 |  | Excavation for GRP Pipes Section 1 | 21d | 2026-05-08 A | 2026-05-18 A | SDR-2-CON-ST-ZA-6800 SS+4d | 100% | 2026-08-10 | 2026-09-02 | SIC- Cost [9218]; Labor [44.81 h]; Plumber [439.47 h]; Excavator [20 h]; Excavator Operator [549.33 h] | 56,409.82 | Z G |
| SDR-2-CON-ST-ZA-5980 |  | Excavation for GRP Pipes Section 2 | 21d | 2026-05-18 A | 2026-05-31 A | SDR-2-CON-ST-ZA-6840 FS+8d | 100% | 2026-09-13 | 2026-10-07 | SIC- Cost [9218]; Labor [44.81 h]; Plumber [439.47 h]; Excavator [20 h]; Excavator Operator [549.33 h] | 56,409.82 | Z G |
|  | 7 | **bedding Works** |  | 2026-06-01 | 2026-06-08 |  |  |  |  |  |  |  |
| SDR-2-CON-ST-ZA-6040 |  | Sand bedding for GRP Pipes | 21d | 2026-06-01 A | 2026-06-08 A | SDR-2-CON-ST-ZA-5980 | 100% | 2026-10-08 | 2026-11-01 | SIC- Cost; Labor [44.81 h]; Plumber [81.48 h]; Excavator [12 h]; Excavator Operator [81.48 h]; Dumper Truck [60 h]; Loader [27.14 h] | 28,204.88 | Z G |
|  | 2 | **Pipes Laying** |  | 2026-06-06 | 2026-07-06 |  |  |  |  |  |  |  |
| SDR-2-CON-ST-ZA-5990 |  | Install ST GRP Pipes | 21d | 2026-06-06 A | 2026-07-06 A | SDR-2-CON-ST-ZA-6040 | 100% | 2026-11-02 | 2026-11-25 | Pipe Fitter [67.9 h]; SIC- Cost; Labor [51.21 h]; Plumber [67.9 h]; Excavator [13.15 h]; Excavator Operator [67.9 h] | 253,844.24 | Z G |
|  | 6 | **Testing** |  | 2026-07-07 | 2026-07-20 |  |  |  |  |  |  |  |
| SDR-2-CON-ST-ZA-6030 |  | Testing ST GRP Pipes | 21d | 2026-07-07 A | 2026-07-20 A | SDR-2-CON-ST-ZA-5990 | 100% | 2026-11-26 | 2026-12-20 | SIC- Cost; Plumbing Helper [81.48 h]; Labor [12.8 h]; Plumber [81.48 h]; Excavator [10.5 h]; Excavator Operator [10.06 h] | 56,409.87 | Z G |
|  | 3 | **Backfilling** |  | 2026-08-16 | 2026-08-17 |  |  |  |  |  |  |  |
| SDR-2-CON-ST-ZA-6000 |  | Backfilling ST GRP Pipes | 21d | 2026-08-16 A | 2026-08-17 A | SDR-2-CON-ST-ZA-6030 | 100% | 2026-12-21 | 2027-01-13 | SIC- Cost; Labor [12.8 h]; Plumber [67.9 h]; Excavator [8.27 h]; Excavator Operator [67.9 h] | 112,819.63 | Z G |
|  | 4 | **Manholes** |  | 2026-05-16 | 2026-11-10 |  |  |  |  |  |  |  |
|  | 1 | **Excavation** |  | 2026-05-16 | 2026-06-01 |  |  |  |  |  |  |  |
| SDR-2-CON-ST-ZA-6850 |  | Excavation Manholes Section 1 | 21d | 2026-05-16 A | 2026-05-23 A | SDR-2-CON-ST-ZA-6840 SS | 100% | 2026-08-10 | 2026-09-02 | SIC- Cost; Labor [6.4 h]; Plumber [67.9 h]; Excavator [20 h]; Excavator Operator [67.9 h] | 6,032.88 | Z G |
| SDR-2-CON-ST-ZA-6010 |  | Excavation Manholes Section 2 | 21d | 2026-05-23 A | 2026-06-01 A | SDR-2-CON-ST-ZA-6850 FS+3d | 100% | 2026-09-07 | 2026-10-01 | SIC- Cost; Labor [6.4 h]; Plumber [67.9 h]; Excavator [20 h]; Excavator Operator [67.9 h] | 6,032.88 | Z G |

| ID | WBS | Activity | Duration | Start | Finish | Predecessors | Complete | Remaining | Planned start | Planned finish | Total float | Free float | Resources | Cost | ZONE G | ZONE A |
| --- | --- | --- | --- | --- | --- | --- | --- | --- | --- | --- | --- | --- | --- | --- | --- | --- |
|  | 2 | **bedding Works** |  | 2026-06-02 | 2026-06-06 |  |  |  |  |  |  |  |  |  |  |  |
| SDR-2-CON-ST-ZA-6050 |  | Sand bedding for Manholes | 21d | 2026-06-02 A | 2026-06-06 A | SDR-2-CON-ST-ZA-6010, SDR-2-PRO-DEL-E-1160 SS | 100% |  | 2026-10-03 | 2026-10-26 |  |  | SIC- Cost [18560]; Labor [6.4 h]; Plumber [210.18 h]; Excavator [9.36 h]; Excavator Operator [262.72 h]; Dumper Truck [175 h]; Loader [23.1 h] | 8,043.85 | Z G |  |
|  | 3 | **Install Manholes** |  | 2026-06-07 | 2026-07-01 |  |  |  |  |  |  |  |  |  |  |  |
| SDR-2-CON-ST-ZA-6060 |  | Manholes Installation | 21d | 2026-06-07 A | 2026-07-01 A | SDR-2-CON-ST-ZA-6050 | 100% |  | 2026-10-27 | 2026-11-19 |  |  | SIC- Cost [18560]; Plumbing Helper [219.73 h]; Labor [6.4 h]; Plumber [219.73 h]; Excavator [14.49 h]; Excavator Operator [274.67 h] | 36,197.31 | Z G |  |
|  | 4 | **Testing** |  | 2026-09-07 | 2026-11-10 |  |  |  |  |  |  |  |  |  |  |  |
| SDR-2-CON-ST-ZA-6070 |  | Testing for Manholes | 21d | 2026-09-07 A | 2026-11-10 | SDR-2-CON-ST-ZA-6060 | 25% | 9d | 2026-11-21 | 2026-12-14 | 84d | 0d | SIC- Cost [18560]; Plumbing Helper [114.64 h]; Labor [6.4 h]; Plumber [114.64 h]; Excavator [8.83 h]; Excavator Operator [8.05 h] | 8,043.85 | Z G |  |
|  | 5 | **Backfilling** |  | 2026-08-17 | 2026-08-20 |  |  |  |  |  |  |  |  |  |  |  |
| SDR-2-CON-ST-ZA-6080 |  | Backfilling for Manholes | 21d | 2026-08-17 A | 2026-08-20 A | SDR-2-CON-ST-ZA-6070 SS | 100% |  | 2026-12-15 | 2027-01-07 |  |  | SIC- Cost [18560]; Labor [6.4 h]; Plumber [334.38 h]; Excavator [10.1 h]; Excavator Operator [417.97 h] | 16,087.7 | Z G |  |
|  | 5 | **Catch basin** |  | 2026-06-08 | 2026-08-29 |  |  |  |  |  |  |  |  |  |  |  |
|  | 1 | **Excavation** |  | 2026-06-08 | 2026-07-16 |  |  |  |  |  |  |  |  |  |  |  |
| SDR-2-CON-ST-ZA-6860 |  | Excavation for Catch basin Section 1 | 20d | 2026-06-08 A | 2026-07-16 A | SDR-2-CON-ST-ZA-6060 FS+18d | 100% |  | 2026-12-12 | 2027-01-03 |  |  | SIC- Cost [55598.8]; Labor [19.2 h]; Plumber [429.91 h]; Excavator [13 h]; Excavator Operator [537.39 h] | 22,241.64 | Z G |  |
| SDR-2-CON-ST-ZA-6020 |  | Excavation for Catch basin Section 2 | 20d | 2026-06-15 A | 2026-07-16 A | SDR-2-CON-ST-ZA-6860 | 100% |  | 2027-01-04 | 2027-01-26 |  |  | SIC- Cost [55598.8]; Labor [19.2 h]; Plumber [429.91 h]; Excavator [5 h]; Excavator Operator [537.39 h] | 22,241.64 | Z G |  |
|  | 2 | **bedding Works** |  | 2026-07-23 | 2026-07-28 |  |  |  |  |  |  |  |  |  |  |  |
| SDR-2-CON-ST-ZA-6090 |  | Sand Dedding for Catch basin | 21d | 2026-07-23 A | 2026-07-28 A | SDR-2-CON-ST-ZA-6020 | 100% |  | 2027-01-27 | 2027-02-20 |  |  | SIC- Cost [69655.4]; Labor [25.6 h]; Plumber [57.21 h]; Excavator [11.44 h]; Excavator Operator [21.32 h]; Dumper Truck [11.76 h]; Loader [71.01 h] | 29,655.52 | Z G |  |
|  | 3 | **Install Catch basin** |  | 2026-07-27 | 2026-08-01 |  |  |  |  |  |  |  |  |  |  |  |
| SDR-2-CON-ST-ZA-6100 |  | Install Catch basin | 21d | 2026-07-27 A | 2026-08-01 A | SDR-2-CON-ST-ZA-6090 | 100% |  | 2027-02-21 | 2027-03-22 |  |  | SIC- Cost [69655.4]; Plumbing Helper [219.73 h]; Labor [25.6 h]; Plumber [219.73 h]; Excavator [12.17 h]; Excavator Operator [274.67 h] | 133,449.82 | Z G |  |
|  | 4 | **Testing** |  | 2026-08-03 | 2026-08-10 |  |  |  |  |  |  |  |  |  |  |  |
| SDR-2-CON-ST-ZA-6110 |  | Testing for Catch basin pipe | 8d | 2026-08-03 A | 2026-08-10 A | SDR-2-CON-ST-ZA-6100 | 100% |  | 2027-03-23 | 2027-03-31 |  |  | SIC- Cost [69655.4]; Plumbing Helper [124.2 h]; Labor [25.6 h]; Plumber [124.2 h]; Excavator [6 h]; Excavator Operator [155.25 h] | 29,655.52 | Z G |  |
|  | 5 | **Backfilling** |  | 2026-08-09 | 2026-08-29 |  |  |  |  |  |  |  |  |  |  |  |
| SDR-2-CON-ST-ZA-6120 |  | Backfilling for Catch basin | 21d | 2026-08-09 A | 2026-08-29 A | SDR-2-CON-ST-ZA-6110 | 100% |  | 2027-04-01 | 2027-04-25 |  |  | SIC- Cost [69655.4]; Labor [25.6 h]; Plumber [248.39 h]; Excavator [9.51 h]; Excavator Operator [119.02 h] | 59,310.84 | Z G |  |
|  | SN | **Sewerage Network** |  | 2026-05-18 | 2027-04-27 |  |  |  |  |  |  |  |  |  |  |  |
|  | ZA | **ZONE A** |  | 2026-05-18 | 2027-04-27 |  |  |  |  |  |  |  |  |  |  |  |
|  | 3 | **LINE 1 ( PH2-A-MCA0 )** |  | 2026-06-01 | 2026-11-26 |  |  |  |  |  |  |  |  |  |  |  |
|  | 7 | **Pipes Work** |  | 2026-06-01 | 2026-11-26 |  |  |  |  |  |  |  |  |  |  |  |
|  | 1 | **Excavation** |  | 2026-06-01 | 2026-07-21 |  |  |  |  |  |  |  |  |  |  |  |
| SDR-2-CON-SE-ZA-2460 |  | Excavation for GRP Pipe 200mm Diameter Section 1 | 21d | 2026-06-01 A | 2026-06-08 A | SDR-2-CON-ST-ZA-4780 | 100% |  | 2026-09-24 | 2026-10-18 |  |  | SIC- Cost; Surveyor [64.01 h]; Labor [64.01 h]; Plumber [81.48 h]; Excavator [12 h]; Excavator Operator [11.56 h] | 38,752.21 |  | Z A |
| SDR-2-CON-SE-ZA-1000 |  | Excavation for GRP Pipe 200mm Diameter Section 2 | 20d | 2026-06-08 A | 2026-07-21 A | SDR-2-CON-SE-ZA-2460 FS+3d, SDR-2-PRO-DEL-E-1190 SS, SDR-2-PRO-DEL-E-1180 SS, SDR-2-PRO-DEL-E-1170 SS, SDR-2-PRO-DES-C-1020 SS | 100% |  | 2026-10-22 | 2026-11-14 |  |  | SIC- Cost; Surveyor [64.01 h]; Labor [64.01 h]; Plumber [81.48 h]; Excavator [12 h]; Excavator Operator [67.9 h] | 38,752.21 |  | Z A |

| ID | WBS | Activity | Duration | Start | Finish | Predecessors | Complete | Remaining | Planned start | Planned finish | Total float | Free float | Resources | Cost | ZONE A |
| --- | --- | --- | --- | --- | --- | --- | --- | --- | --- | --- | --- | --- | --- | --- | --- |
|  | 5 | **bedding Works** |  | 2026-06-15 | 2026-07-25 |  |  |  |  |  |  |  |  |  |  |
| SDR-2-CON-SE-ZA-1420 |  | Sand bedding for GRP Pipe 200mm Diameter | 21d | 2026-06-15 A | 2026-07-25 A | SDR-2-CON-SE-ZA-1000 | 100% |  | 2026-11-15 | 2026-12-08 |  |  | SIC- Cost; Surveyor [64.01 h]; Labor [64.01 h]; Plumber [67.9 h]; Excavator [12.43 h]; Excavator Operator [12.07 h] | 19,376.09 | Z A |
|  | 2 | **Pipes Laying** |  | 2026-06-22 | 2026-11-01 |  |  |  |  |  |  |  |  |  |  |
| SDR-2-CON-SE-ZA-1010 |  | 200 mm GRP Pipe Laying | 21d | 2026-06-22 A | 2026-11-01 | SDR-2-CON-SE-ZA-1000, SDR-2-CON-SE-ZA-1420 | 90% | 1d | 2026-12-09 | 2027-01-02 | 111d | 1d | SIC- Cost; Surveyor [96.01 h]; Compactor [197.14 h]; Labor [96.01 h]; Plumber [67.9 h]; Excavator [6 h]; Excavator Operator [67.9 h] | 174,384.91 | Z A |
|  | 3 | **Testing** |  | 2026-08-16 | 2026-11-02 |  |  |  |  |  |  |  |  |  |  |
| SDR-2-CON-SE-ZA-1020 |  | Testing of 200 mm GRP Pipe. | 21d | 2026-08-16 A | 2026-11-02 | SDR-2-CON-SE-ZA-1010 FF, SDR-2-CON-RW-ZA-1760 FF | 55% | 1d | 2027-01-03 | 2027-01-26 | 110d | 0d | SIC- Cost [77504.4]; Surveyor [12.8 h]; Labor [12.8 h]; Plumber [57.32 h]; Excavator [6 h]; Excavator Operator [71.65 h] | 38,752.21 | Z A |
|  | 6 | **Backfilling** |  | 2026-11-03 | 2026-11-26 |  |  |  |  |  |  |  |  |  |  |
| SDR-2-CON-SE-ZA-1430 |  | Backfilling of 200 mm GRP Pipe. | 21d | 2026-11-03 | 2026-11-26 | SDR-2-CON-SE-ZA-1020 |  |  |  |  | 110d | 104d | SIC- Cost; Surveyor [12.8 h]; Labor [12.8 h]; Plumber [67.9 h]; Excavator [15.38 h]; Excavator Operator [67.9 h] | 77,504.4 | Z A |
|  | 4 | **Manholes** |  | 2026-06-15 | 2026-11-25 |  |  |  |  |  |  |  |  |  |  |
|  | 1 | **Excavation** |  | 2026-06-15 | 2026-07-21 |  |  |  |  |  |  |  |  |  |  |
| SDR-2-CON-SE-ZA-2470 |  | Excavation for manhole. Section 1 | 21d | 2026-06-15 A | 2026-06-24 A | SDR-2-CON-SE-ZA-2460 SS | 100% |  | 2026-09-24 | 2026-10-18 |  |  | SIC- Cost [25529.9]; Surveyor [51.21 h]; Labor [51.21 h]; Plumber [257.95 h]; Excavator [12 h]; Excavator Operator [11.56 h] | 19,147.4 | Z A |
| SDR-2-CON-SE-ZA-1030 |  | Excavation for manhole. Section 2 | 21d | 2026-07-01 A | 2026-07-21 A | SDR-2-CON-SE-ZA-2470, SDR-2-CON-RW-ZA-1040 | 100% |  | 2026-10-19 | 2026-11-11 |  |  | SIC- Cost [25529.9]; Surveyor [51.21 h]; Labor [51.21 h]; Plumber [257.95 h]; Excavator [267.36 h]; Excavator Operator [322.43 h] | 19,147.07 | Z A |
|  | 2 | **bedding Works** |  | 2026-07-05 | 2026-07-23 |  |  |  |  |  |  |  |  |  |  |
| SDR-2-CON-SE-ZA-1450 |  | Sand bedding for manhole. | 21d | 2026-07-05 A | 2026-07-23 A | SDR-2-CON-SE-ZA-1030 | 100% |  | 2026-11-12 | 2026-12-06 |  |  | SIC- Cost [25529.9]; Surveyor [51.21 h]; Labor [51.21 h]; Plumber [152.86 h]; Excavator [10.24 h]; Excavator Operator [12.07 h] | 25,529.87 | Z A |
|  | 3 | **Install Manholes** |  | 2026-07-06 | 2026-10-26 |  |  |  |  |  |  |  |  |  |  |
| SDR-2-CON-SE-ZA-1040 |  | Manhole Installation | 21d | 2026-07-06 A | 2026-10-26 A | SDR-2-CON-RW-ZA-3110, SDR-2-CON-SE-ZA-1030, SDR-2-PRO-MAS-C-1070, SDR-2-PRO-ST-M-1030 FF, SDR-2-CON-SE-ZA-1450 | 100% |  | 2026-12-07 | 2026-12-30 |  |  | SIC- Cost [204239]; Surveyor [76.81 h]; Compactor [221.43 h]; Labor [76.81 h]; Plumber [152.86 h]; Excavator [20 h]; Excavator Operator [191.07 h] | 114,884.36 | Z A |
|  | 4 | **Testing** |  | 2026-07-09 | 2026-11-01 |  |  |  |  |  |  |  |  |  |  |
| SDR-2-CON-SE-ZA-1050 |  | Testing | 21d | 2026-07-09 A | 2026-11-01 | SDR-2-CON-RW-ZA-2900 | 60% | 1d | 2026-12-31 | 2027-01-24 | 114d | 0d | SIC- Cost [25529.9]; Surveyor [38.41 h]; Labor [38.41 h]; Plumber [114.64 h]; Excavator [6 h]; Excavator Operator [143.3 h] | 25,529.87 | Z A |
|  | 5 | **Backfilling** |  | 2026-11-02 | 2026-11-25 |  |  |  |  |  |  |  |  |  |  |
| SDR-2-CON-SE-ZA-1440 |  | Backfilling | 21d | 2026-11-02 | 2026-11-25 | SDR-2-CON-SE-ZA-1050, SDR-2-CON-ST-ZA-6080 FS+11d, SDR-2-CON-ST-ZA-6000 FS+9d, SDR-2-CON-ST-ZA-5630 FS+10d |  |  |  |  | 114d | 105d | SIC- Cost [25529.9]; Surveyor [38.41 h]; Labor [38.41 h]; Plumber [200.63 h]; Excavator [11.14 h]; Excavator Operator [250.78 h] | 51,059.72 | Z A |
|  | 4 | **LINE 2 AND LINE 3 ( PH2-A-MCC0 )** |  | 2026-06-08 | 2027-03-03 |  |  |  |  |  |  |  |  |  |  |
|  | 7 | **Pipes Work** |  | 2026-06-08 | 2027-03-03 |  |  |  |  |  |  |  |  |  |  |
|  | 1 | **Excavation** |  | 2026-06-08 | 2026-06-22 |  |  |  |  |  |  |  |  |  |  |
| SDR-2-CON-SE-ZA-2480 |  | Excavation for GRP Pipe 200mm Diameter Section 1 | 21d | 2026-06-08 A | 2026-06-15 A | SDR-2-CON-SE-ZA-2460 SS+10d | 100% |  | 2026-10-06 | 2026-10-29 |  |  | SIC- Cost; Surveyor [64.01 h]; Labor [64.01 h]; Plumber [67.9 h]; Excavator [14.89 h]; Excavator Operator [67.9 h] | 38,752.21 | Z A |
| SDR-2-CON-SE-ZA-1460 |  | Excavation for GRP Pipe 200mm Diameter Section 2 | 20d | 2026-06-15 A | 2026-06-22 A | SDR-2-CON-SE-ZA-2480 FS+7d | 100% |  | 2026-11-08 | 2026-11-30 |  |  | SIC- Cost; Surveyor [64.01 h]; Labor [64.01 h]; Plumber [67.9 h]; Excavator [14.89 h]; Excavator Operator [67.9 h] | 38,752.21 | Z A |

| ID | WBS | Activity | Duration | Start | Finish | Predecessors | Complete | Remaining | Planned start | Planned finish | Total float | Free float | Resources | Cost | ZONE A |
| --- | --- | --- | --- | --- | --- | --- | --- | --- | --- | --- | --- | --- | --- | --- | --- |
|  | 5 | **bedding Works** |  | 2026-07-12 | 2026-07-20 |  |  |  |  |  |  |  |  |  |  |
| SDR-2-CON-SE-ZA-1520 |  | Sand bedding for GRP Pipe 200mm Diameter | 21d | 2026-07-12 A | 2026-07-20 A | SDR-2-CON-SE-ZA-1460 | 100% |  | 2026-12-01 | 2026-12-24 |  |  | SIC- Cost; Surveyor [64.01 h]; Labor [64.01 h]; Plumber [67.9 h]; Excavator [10.79 h]; Excavator Operator [10.06 h] | 19,376.09 | Z A |
|  | 2 | **Pipes Laying** |  | 2026-07-22 | 2026-11-21 |  |  |  |  |  |  |  |  |  |  |
| SDR-2-CON-SE-ZA-1470 |  | 200 mm GRP Pipe Laying | 21d | 2026-07-22 A | 2026-11-21 | SDR-2-CON-SE-ZA-1460, SDR-2-CON-SE-ZA-1520, SDR-2-CON-RW-ZG-2260 FF | 90% | 1d | 2026-12-26 | 2027-01-18 | 97d | 66d | SIC- Cost; Surveyor [67.9 h]; Compactor [300 h]; Labor [67.9 h]; Grader Operator [301.71 h]; Plumber [67.9 h]; Excavator [5 h]; Excavator Operator [67.9 h] | 174,384.91 | Z A |
|  | 3 | **Testing** |  | 2026-08-17 | 2027-02-06 |  |  |  |  |  |  |  |  |  |  |
| SDR-2-CON-SE-ZA-1480 |  | Testing of 200 mm GRP Pipe. | 21d | 2026-08-17 A | 2027-02-06 | SDR-2-CON-ST-ZA-5550, SDR-2-CON-RW-ZA-1050 FS+2d, SDR-2-CON-SE-ZA-1470 FF, SDR-2-CON-ST-ZA-5100 FF, SDR-2-CON-ST-ZA-1300 FF | 60% | 1d | 2027-01-19 | 2027-02-11 | 31d | 0d | SIC- Cost; Surveyor [12.8 h]; Compactor [300 h]; Labor [12.8 h]; Plumber [76.43 h]; Excavator [6 h]; Excavator Operator [81.48 h]; Grader [376.76 h] | 38,752.21 | Z A |
|  | 6 | **Backfilling** |  | 2027-02-07 | 2027-03-03 |  |  |  |  |  |  |  |  |  |  |
| SDR-2-CON-SE-ZA-1530 |  | Backfilling of 200 mm GRP Pipe. | 21d | 2027-02-07 | 2027-03-03 | SDR-2-CON-SE-ZA-1480 |  |  |  |  | 31d | 22d | SIC- Cost; Surveyor [12.8 h]; Compactor [370 h]; Labor [12.8 h]; Plumber [67.9 h]; Excavator [11.95 h]; Excavator Operator [67.9 h]; Grader [120 h] | 77,504.4 | Z A |
|  | 4 | **Manholes** |  | 2026-06-11 | 2026-12-15 |  |  |  |  |  |  |  |  |  |  |
|  | 1 | **Excavation** |  | 2026-06-11 | 2026-06-30 |  |  |  |  |  |  |  |  |  |  |
| SDR-2-CON-SE-ZA-2490 |  | Excavation for manhole. Section 1 | 21d | 2026-06-11 A | 2026-06-20 A | SDR-2-CON-SE-ZA-2480 SS | 100% |  | 2026-10-06 | 2026-10-29 |  |  | SIC- Cost [25529.9]; Surveyor [51.21 h]; Labor [51.21 h]; Plumber [191.07 h]; Excavator [14.89 h]; Excavator Operator [238.84 h] | 19,147.4 | Z A |
| SDR-2-CON-SE-ZA-1490 |  | Excavation for manhole. Section 2 | 21d | 2026-06-21 A | 2026-06-30 A | SDR-2-CON-SE-ZA-2490 FS+3d | 100% |  | 2026-11-03 | 2026-11-26 |  |  | SIC- Cost [25529.9]; Surveyor [51.21 h]; Labor [51.21 h]; Plumber [191.07 h]; Excavator [14.89 h]; Excavator Operator [238.84 h] | 19,147.4 | Z A |
|  | 2 | **bedding Works** |  | 2026-07-01 | 2026-07-13 |  |  |  |  |  |  |  |  |  |  |
| SDR-2-CON-SE-ZA-1550 |  | Sand bedding for manhole. | 21d | 2026-07-01 A | 2026-07-13 A | SDR-2-CON-SE-ZA-1490 | 100% |  | 2026-11-28 | 2026-12-21 |  |  | SIC- Cost [25529.9]; Surveyor [51.21 h]; Labor [51.21 h]; Plumber [133.75 h]; Excavator [10.79 h]; Excavator Operator [10.06 h] | 25,529.87 | Z A |
|  | 3 | **Install Manholes** |  | 2026-07-07 | 2026-10-06 |  |  |  |  |  |  |  |  |  |  |
| SDR-2-CON-SE-ZA-1500 |  | Manhole Installation | 21d | 2026-07-07 A | 2026-10-06 A | SDR-2-CON-SE-ZA-1490, SDR-2-CON-SE-ZA-1550, SDR-2-CON-RW-ZG-2500 FF | 100% |  | 2026-12-22 | 2027-01-14 |  |  | SIC- Cost [204239]; Surveyor [76.81 h]; Labor [76.81 h]; Plumber [171.96 h]; Excavator [5.54 h]; Excavator Operator [214.96 h] | 114,884.36 | Z A |
|  | 4 | **Testing** |  | 2026-08-26 | 2026-11-21 |  |  |  |  |  |  |  |  |  |  |
| SDR-2-CON-SE-ZA-1510 |  | Testing | 21d | 2026-08-26 A | 2026-11-21 | SDR-2-CON-ST-ZA-5550, SDR-2-CON-ST-ZA-5400, SDR-2-CON-RW-ZG-1060 FF | 45% | 1d | 2027-01-20 | 2027-02-13 | 97d | 0d | SIC- Cost [25529.9]; Surveyor [38.41 h]; Labor [38.41 h]; Plumber [76.43 h]; Excavator [6 h]; Excavator Operator [95.54 h] | 25,529.87 | Z A |
|  | 5 | **Backfilling** |  | 2026-11-22 | 2026-12-15 |  |  |  |  |  |  |  |  |  |  |
| SDR-2-CON-SE-ZA-1540 |  | Backfilling | 21d | 2026-11-22 | 2026-12-15 | SDR-2-CON-SE-ZA-1510 |  |  |  |  | 97d | 88d | SIC- Cost [25529.9]; Surveyor [38.41 h]; Labor [38.41 h]; Plumber [200.63 h]; Excavator [13.32 h]; Excavator Operator [250.78 h] | 51,059.72 | Z A |
|  | 5 | **LINE 4 AND LINE 5 ( PH2-A-MCD0 )** |  | 2026-05-18 | 2027-04-27 |  |  |  |  |  |  |  |  |  |  |
|  | 7 | **Pipes Work** |  | 2026-05-18 | 2027-03-03 |  |  |  |  |  |  |  |  |  |  |
|  | 1 | **Excavation** |  | 2026-05-18 | 2026-06-15 |  |  |  |  |  |  |  |  |  |  |
| SDR-2-CON-SE-ZA-2500 |  | Excavation for GRP Pipe 200mm Diameter Section 1 | 21d | 2026-05-18 A | 2026-05-24 A | SDR-2-CON-ST-ZA-4030 FS+10d, SDR-2-CON-ST-ZA-6190 | 100% |  | 2026-10-10 | 2026-11-02 |  |  | SIC- Cost; Surveyor [64.01 h]; Labor [64.01 h]; Plumber [81.48 h]; Excavator [14.89 h]; Excavator Operator [81.48 h] | 38,752.21 | Z A |
| SDR-2-CON-SE-ZA-1560 |  | Excavation for GRP Pipe 200mm Diameter Section 2 | 21d | 2026-05-24 A | 2026-06-15 A | SDR-2-CON-SE-ZA-2500 FS+4d, SDR-2-CON-RW-ZG-2250 | 100% |  | 2026-11-08 | 2026-12-01 |  |  | SIC- Cost; Surveyor [64.01 h]; Labor [64.01 h]; Plumber [81.48 h]; Excavator [14.89 h]; Excavator Operator [81.48 h] | 38,752.21 | Z A |

| ID | WBS | Activity | Duration | Start | Finish | Predecessors | Complete | Remaining | Planned start | Planned finish | Total float | Free float | Resources | Cost | ZONE A |
| --- | --- | --- | --- | --- | --- | --- | --- | --- | --- | --- | --- | --- | --- | --- | --- |
|  | 5 | **bedding Works** |  | 2026-06-22 | 2026-06-30 |  |  |  |  |  |  |  |  |  |  |
| SDR-2-CON-SE-ZA-1620 |  | Sand bedding for GRP Pipe 200mm Diameter | 21d | 2026-06-22 A | 2026-06-30 A | SDR-2-CON-SE-ZA-1560 | 100% |  | 2026-12-02 | 2026-12-26 |  |  | SIC- Cost; Surveyor [64.01 h]; Labor [64.01 h]; Plumber [81.48 h]; Excavator [20 h]; Excavator Operator [81.48 h] | 19,376.09 | Z A |
|  | 2 | **Pipes Laying** |  | 2026-07-21 | 2026-11-01 |  |  |  |  |  |  |  |  |  |  |
| SDR-2-CON-SE-ZA-1570 |  | 200 mm GRP Pipe Laying | 21d | 2026-07-21 A | 2026-11-01 | SDR-2-CON-SE-ZA-1560, SDR-2-CON-SE-ZA-1620 | 80% | 1d | 2026-12-27 | 2027-01-19 | 114d | 83d | SIC- Cost; Surveyor [96.01 h]; Labor [96.01 h]; Plumber [81.48 h]; Excavator [5 h]; Excavator Operator [81.48 h] | 174,384.91 | Z A |
|  | 3 | **Testing** |  | 2026-08-16 | 2027-02-06 |  |  |  |  |  |  |  |  |  |  |
| SDR-2-CON-SE-ZA-1580 |  | Testing of 200 mm GRP Pipe. | 21d | 2026-08-16 A | 2027-02-06 | SDR-2-CON-ST-ZA-6160, SDR-2-CON-SE-ZA-1570 FF, SDR-2-CON-ST-ZA-4500 FF | 60% | 1d | 2027-01-20 | 2027-02-13 | 31d | 0d | SIC- Cost; Surveyor [12.8 h]; Labor [12.8 h]; Plumber [76.43 h]; Excavator [6 h]; Excavator Operator [95.54 h] | 38,752.21 | Z A |
|  | 6 | **Backfilling** |  | 2027-02-07 | 2027-03-03 |  |  |  |  |  |  |  |  |  |  |
| SDR-2-CON-SE-ZA-1630 |  | Backfilling of 200 mm GRP Pipe. | 21d | 2027-02-07 | 2027-03-03 | SDR-2-CON-SE-ZA-1580 |  |  |  |  | 31d | 22d | SIC- Cost; Surveyor [12.8 h]; Labor [1020.55 h]; Plumber [67.9 h]; Excavator [11.95 h]; Excavator Operator [67.9 h] | 77,504.4 | Z A |
|  | 4 | **Manholes** |  | 2026-05-18 | 2027-04-27 |  |  |  |  |  |  |  |  |  |  |
|  | 1 | **Excavation** |  | 2026-05-18 | 2026-07-16 |  |  |  |  |  |  |  |  |  |  |
| SDR-2-CON-SE-ZA-2510 |  | Excavation for manhole. Section 1 | 21d | 2026-05-18 A | 2026-05-25 A | SDR-2-CON-SE-ZA-2500 | 100% |  | 2026-11-03 | 2026-11-26 |  |  | SIC- Cost [25529.9]; Surveyor [51.21 h]; Labor [51.21 h]; Plumber [81.48 h]; Excavator [14.89 h]; Excavator Operator [81.48 h] | 19,147.4 | Z A |
| SDR-2-CON-SE-ZA-1590 |  | Excavation for manhole. Section 2 | 21d | 2026-07-09 A | 2026-07-16 A | SDR-2-CON-SE-ZA-2510 | 100% |  | 2026-11-28 | 2026-12-21 |  |  | SIC- Cost [25529.9]; Surveyor [51.21 h]; Labor [51.21 h]; Plumber [81.48 h]; Excavator [14.89 h]; Excavator Operator [81.48 h] | 19,147.4 | Z A |
|  | 2 | **bedding Works** |  | 2026-07-16 | 2026-07-27 |  |  |  |  |  |  |  |  |  |  |
| SDR-2-CON-SE-ZA-1650 |  | Sand bedding for manhole. | 21d | 2026-07-16 A | 2026-07-27 A | SDR-2-CON-SE-ZA-1590 | 100% |  | 2026-12-22 | 2027-01-14 |  |  | SIC- Cost [25529.9]; Surveyor [51.21 h]; Labor [51.21 h]; Plumber [133.75 h]; Excavator [5.92 h]; Excavator Operator [167.19 h] | 25,529.87 | Z A |
|  | 3 | **Install Manholes** |  | 2026-07-27 | 2026-10-06 |  |  |  |  |  |  |  |  |  |  |
| SDR-2-CON-SE-ZA-1600 |  | Manhole Installation | 21d | 2026-07-27 A | 2026-10-06 A | SDR-2-CON-ST-ZA-6160, SDR-2-CON-SE-ZA-1590, SDR-2-CON-SE-ZA-1650, SDR-2-CON-ST-ZA-4500 FF | 100% |  | 2027-01-16 | 2027-02-08 |  |  | SIC- Cost [204239]; Surveyor [76.81 h]; Labor [76.81 h]; Plumber [171.96 h]; Excavator [14.07 h]; Excavator Operator [214.96 h] | 114,884.36 | Z A |
|  | 4 | **Testing** |  | 2026-08-27 | 2027-02-07 |  |  |  |  |  |  |  |  |  |  |
| SDR-2-CON-SE-ZA-1610 |  | Testing | 21d | 2026-08-27 A | 2027-02-07 | SDR-2-CON-SE-ZA-1600 FF | 25% | 0d | 2027-02-09 | 2027-03-06 | 47d | 43d | SIC- Cost [25529.9]; Surveyor [38.41 h]; Labor [38.41 h]; Plumber [76.43 h]; Excavator [8.83 h]; Excavator Operator [95.54 h] | 25,529.87 | Z A |
|  | 5 | **Backfilling** |  | 2027-04-04 | 2027-04-27 |  |  |  |  |  |  |  |  |  |  |
| SDR-2-CON-SE-ZA-2690 |  | Backfilling | 21d | 2027-04-04 | 2027-04-27 | SDR-2-CON-SE-ZA-1610, SDR-2-CON-ST-ZA-3350 |  |  |  |  | 4d | 0d | SIC- Cost; Surveyor [38.4 h]; Labor [38.4 h]; Plumber [200.62 h]; Excavator [4.32 h]; Excavator Operator [180.24 h] | 51,059.72 | Z A |
|  | 6 | **LINE 6 AND LINE 7 ( PH2-A-MCE0 )** |  | 2026-06-08 | 2027-03-04 |  |  |  |  |  |  |  |  |  |  |
|  | 7 | **Pipes Work** |  | 2026-06-08 | 2027-03-04 |  |  |  |  |  |  |  |  |  |  |
|  | 1 | **Excavation** |  | 2026-06-08 | 2026-07-20 |  |  |  |  |  |  |  |  |  |  |
| SDR-2-CON-SE-ZA-2520 |  | Excavation for GRP Pipe 200mm Diameter Section 1 | 21d | 2026-06-08 A | 2026-06-15 A | SDR-2-CON-ST-ZA-4180 FS+6d | 100% |  | 2026-10-21 | 2026-11-14 |  |  | SIC- Cost; Surveyor [64.01 h]; Labor [64.01 h]; Plumber [81.48 h]; Excavator [14.89 h]; Excavator Operator [81.48 h] | 38,752.21 | Z A |
| SDR-2-CON-SE-ZA-1660 |  | Excavation for GRP Pipe 200mm Diameter Section 2 | 21d | 2026-06-15 A | 2026-07-20 A | SDR-2-CON-SE-ZA-2520 FS+3d | 100% |  | 2026-11-18 | 2026-12-12 |  |  | SIC- Cost; Surveyor [64.01 h]; Labor [64.01 h]; Plumber [81.48 h]; Excavator [14.89 h]; Excavator Operator [81.48 h] | 38,752.21 | Z A |

| ID | WBS | Activity | Duration | Start | Finish | Predecessors | Complete | Remaining | Planned start | Planned finish | Total float | Free float | Resources | Cost | ZONE A |
| --- | --- | --- | --- | --- | --- | --- | --- | --- | --- | --- | --- | --- | --- | --- | --- |
|  | 5 | **bedding Works** |  | 2026-07-20 | 2026-08-05 |  |  |  |  |  |  |  |  |  |  |
| SDR-2-CON-SE-ZA-1720 |  | Sand bedding for GRP Pipe 200mm Diameter | 21d | 2026-07-20 A | 2026-08-05 A | SDR-2-CON-SE-ZA-1660 | 100% |  | 2026-12-13 | 2027-01-05 |  |  | SIC- Cost [77504.4]; Surveyor [64.01 h]; Labor [64.01 h]; Plumber [81.48 h]; Excavator [12.69 h]; Excavator Operator [12.07 h] | 19,376.09 | Z A |
|  | 2 | **Pipes Laying** |  | 2026-07-28 | 2026-12-24 |  |  |  |  |  |  |  |  |  |  |
| SDR-2-CON-SE-ZA-1670 |  | 200 mm GRP Pipe Laying | 21d | 2026-07-28 A | 2026-12-24 | SDR-2-CON-SE-ZA-1660, SDR-2-CON-SE-ZA-1720, SDR-2-CON-RW-ZA-2850 FF | 85% | 1d | 2027-01-06 | 2027-01-30 | 75d | 38d | SIC- Cost [232513]; Surveyor [96.01 h]; Labor [67.9 h]; Plumber [67.9 h]; Excavator [13.64 h]; Excavator Operator [67.9 h] | 174,384.91 | Z A |
|  | 3 | **Testing** |  | 2026-08-16 | 2027-02-07 |  |  |  |  |  |  |  |  |  |  |
| SDR-2-CON-SE-ZA-1680 |  | Testing of 200 mm GRP Pipe. | 21d | 2026-08-16 A | 2027-02-07 | SDR-2-CON-SE-ZA-1670 FF, SDR-2-CON-ST-ZA-4580 FF | 60% | 1d | 2027-01-31 | 2027-02-24 | 37d | 0d | SIC- Cost [77504.4]; Surveyor [12.8 h]; Labor [12.8 h]; Plumber [76.43 h]; Excavator [6 h]; Excavator Operator [67.9 h] | 38,752.21 | Z A |
|  | 6 | **Backfilling** |  | 2027-02-08 | 2027-03-04 |  |  |  |  |  |  |  |  |  |  |
| SDR-2-CON-SE-ZA-1730 |  | Backfilling of 200 mm GRP Pipe. | 21d | 2027-02-08 | 2027-03-04 | SDR-2-CON-SE-ZA-1680 |  |  |  |  | 37d | 28d | SIC- Cost [77504.4]; Surveyor [12.8 h]; Labor [1010.47 h]; Plumber [81.48 h]; Excavator [11.95 h]; Excavator Operator [81.48 h] | 77,504.4 | Z A |
|  | 4 | **Manholes** |  | 2026-06-14 | 2027-01-20 |  |  |  |  |  |  |  |  |  |  |
|  | 1 | **Excavation** |  | 2026-06-14 | 2026-07-01 |  |  |  |  |  |  |  |  |  |  |
| SDR-2-CON-SE-ZA-2530 |  | Excavation for manhole. Section 1 | 21d | 2026-06-14 A | 2026-06-22 A | SDR-2-CON-SE-ZA-2520 SS | 100% |  | 2026-10-21 | 2026-11-14 |  |  | SIC- Cost [25529.9]; Surveyor [51.21 h]; Labor [51.21 h]; Plumber [191.07 h]; Excavator [13.5 h]; Excavator Operator [238.84 h] | 19,147.4 | Z A |
| SDR-2-CON-SE-ZA-1690 |  | Excavation for manhole.Section 2 | 21d | 2026-06-23 A | 2026-07-01 A | SDR-2-CON-SE-ZA-2530 | 100% |  | 2026-11-15 | 2026-12-08 |  |  | SIC- Cost [25529.9]; Surveyor [51.21 h]; Labor [51.21 h]; Plumber [191.07 h]; Excavator [13.5 h]; Excavator Operator [238.84 h] | 19,147.4 | Z A |
|  | 2 | **bedding Works** |  | 2026-07-01 | 2026-07-13 |  |  |  |  |  |  |  |  |  |  |
| SDR-2-CON-SE-ZA-1750 |  | Sand bedding for manhole. | 21d | 2026-07-01 A | 2026-07-13 A | SDR-2-CON-SE-ZA-1690 | 100% |  | 2026-12-09 | 2027-01-02 |  |  | SIC- Cost [25529.9]; Surveyor [51.21 h]; Labor [51.21 h]; Plumber [95.54 h]; Excavator [6 h]; Excavator Operator [6.03 h] | 25,529.87 | Z A |
|  | 3 | **Install Manholes** |  | 2026-07-15 | 2026-10-06 |  |  |  |  |  |  |  |  |  |  |
| SDR-2-CON-SE-ZA-1700 |  | Manhole Installation | 21d | 2026-07-15 A | 2026-10-06 A | SDR-2-CON-SE-ZA-1690, SDR-2-CON-SE-ZA-1750 | 100% |  | 2027-01-03 | 2027-01-26 |  |  | SIC- Cost [204239]; Surveyor [76.81 h]; Labor [76.81 h]; Plumber [143.3 h]; Excavator [9.6 h]; Excavator Operator [9.05 h] | 114,884.36 | Z A |
|  | 4 | **Testing** |  | 2026-08-27 | 2026-12-21 |  |  |  |  |  |  |  |  |  |  |
| SDR-2-CON-SE-ZA-1710 |  | Testing | 21d | 2026-08-27 A | 2026-12-21 | SDR-2-CON-ST-ZA-1300 FF, SDR-2-CON-RW-ZA-2370 FF | 30% | 0.9d | 2027-01-27 | 2027-02-20 | 73d | 0d | SIC- Cost [25529.9]; Surveyor [38.41 h]; Labor [38.41 h]; Plumber [76.43 h]; Excavator [6 h]; Excavator Operator [95.54 h] | 25,529.87 | Z A |
|  | 5 | **Backfilling** |  | 2026-12-28 | 2027-01-20 |  |  |  |  |  |  |  |  |  |  |
| SDR-2-CON-SE-ZA-1740 |  | Backfilling | 21d | 2026-12-28 | 2027-01-20 | SDR-2-CON-SE-ZA-1710 FS+5d |  |  |  |  | 73d | 64d | SIC- Cost [25529.9]; Surveyor [38.41 h]; Labor [1046.16 h]; Plumber [152.86 h]; Excavator [6.88 h]; Excavator Operator [191.07 h] | 51,059.72 | Z A |
|  | 7 | **LINE 8 AND LINE 9 ( PH2-A-MCF0 )** |  | 2026-06-23 | 2026-12-01 |  |  |  |  |  |  |  |  |  |  |
|  | 7 | **Pipes Work** |  | 2026-06-23 | 2026-11-25 |  |  |  |  |  |  |  |  |  |  |
|  | 1 | **Excavation** |  | 2026-06-23 | 2026-07-13 |  |  |  |  |  |  |  |  |  |  |
| SDR-2-CON-SE-ZA-2540 |  | Excavation for GRP Pipe 200mm Diameter Section 1 | 21d | 2026-06-23 A | 2026-07-02 A | SDR-2-CON-ST-ZA-4330 | 100% |  | 2026-10-14 | 2026-11-07 |  |  | SIC- Cost [77504.4]; Surveyor [64.01 h]; Labor [64.01 h]; Plumber [81.48 h]; Excavator [14.89 h]; Excavator Operator [81.48 h] | 38,752.21 | Z A |
| SDR-2-CON-SE-ZA-1760 |  | Excavation for GRP Pipe 200mm Diameter Section 2 | 21d | 2026-07-04 A | 2026-07-13 A | SDR-2-CON-SE-ZA-2540 FS+3d | 100% |  | 2026-11-11 | 2026-12-05 |  |  | SIC- Cost [77504.4]; Surveyor [64.01 h]; Labor [64.01 h]; Plumber [81.48 h]; Excavator [14.89 h]; Excavator Operator [81.48 h] | 38,752.21 | Z A |

| ID | WBS | Activity | Duration | Start | Finish | Predecessors | Complete | Remaining | Planned start | Planned finish | Total float | Free float | Resources | Cost | ZONE A |
| --- | --- | --- | --- | --- | --- | --- | --- | --- | --- | --- | --- | --- | --- | --- | --- |
|  | 5 | **bedding Works** |  | 2026-07-14 | 2026-07-27 |  |  |  |  |  |  |  |  |  |  |
| SDR-2-CON-SE-ZA-1820 |  | Sand bedding for GRP Pipe 200mm Diameter | 21d | 2026-07-14 A | 2026-07-27 A | SDR-2-CON-SE-ZA-1760, SDR-2-CON-RW-ZG-1950 SS | 100% |  | 2026-12-06 | 2026-12-29 |  |  | SIC- Cost [77504.4]; Surveyor [64.01 h]; Labor [64.01 h]; Plumber [81.48 h]; Excavator [12.93 h]; Excavator Operator [12.07 h] | 19,376.09 | Z A |
|  | 2 | **Pipes Laying** |  | 2026-07-27 | 2026-11-01 |  |  |  |  |  |  |  |  |  |  |
| SDR-2-CON-SE-ZA-1770 |  | 200 mm GRP Pipe Laying | 21d | 2026-07-27 A | 2026-11-01 | SDR-2-CON-SE-ZA-1760, SDR-2-CON-SE-ZA-1820, SDR-2-CON-RW-ZG-2500 FF | 75% | 1d | 2026-12-30 | 2027-01-23 | 114d | 0d | SIC- Cost [232513]; Surveyor [67.9 h]; Labor [67.9 h]; Plumber [67.9 h]; Excavator [5 h]; Excavator Operator [67.9 h] | 174,384.91 | Z A |
|  | 3 | **Testing** |  | 2026-08-18 | 2026-11-01 |  |  |  |  |  |  |  |  |  |  |
| SDR-2-CON-SE-ZA-1780 |  | Testing of 200 mm GRP Pipe. | 21d | 2026-08-18 A | 2026-11-01 | SDR-2-CON-SE-ZA-1770 FF | 60% | 1d | 2027-01-24 | 2027-02-16 | 114d | 0d | SIC- Cost [77504.4]; Surveyor [12.8 h]; Labor [4707.37 h]; Plumber [76.43 h]; Excavator [6 h]; Excavator Operator [95.54 h] | 38,752.21 | Z A |
|  | 6 | **Backfilling** |  | 2026-11-02 | 2026-11-25 |  |  |  |  |  |  |  |  |  |  |
| SDR-2-CON-SE-ZA-1830 |  | Backfilling of 200 mm GRP Pipe. | 21d | 2026-11-02 | 2026-11-25 | SDR-2-CON-SE-ZA-1780 |  |  |  |  | 114d | 105d | SIC- Cost [77504.4]; Surveyor [12.8 h]; Labor [1020.55 h]; Plumber [81.48 h]; Excavator [12.32 h]; Excavator Operator [81.48 h] | 77,504.4 | Z A |
|  | 4 | **Manholes** |  | 2026-06-23 | 2026-12-01 |  |  |  |  |  |  |  |  |  |  |
|  | 1 | **Excavation** |  | 2026-06-23 | 2026-07-14 |  |  |  |  |  |  |  |  |  |  |
| SDR-2-CON-SE-ZA-2550 |  | Excavation for manhole. Section 1 | 21d | 2026-06-23 A | 2026-06-30 A | SDR-2-CON-SE-ZA-2540 SS | 100% |  | 2026-10-14 | 2026-11-07 |  |  | SIC- Cost [25529.9]; Surveyor [51.21 h]; Labor [51.21 h]; Plumber [171.96 h]; Excavator [14.89 h]; Excavator Operator [214.96 h] | 19,147.4 | Z A |
| SDR-2-CON-SE-ZA-1790 |  | Excavation for manhole. Section 2 | 21d | 2026-07-01 A | 2026-07-14 A | SDR-2-CON-SE-ZA-2550 FS+3d | 100% |  | 2026-11-11 | 2026-12-05 |  |  | SIC- Cost [25529.9]; Surveyor [51.21 h]; Labor [51.21 h]; Plumber [171.96 h]; Excavator [14.89 h]; Excavator Operator [214.96 h] | 19,147.4 | Z A |
|  | 2 | **bedding Works** |  | 2026-07-01 | 2026-07-20 |  |  |  |  |  |  |  |  |  |  |
| SDR-2-CON-SE-ZA-1850 |  | Sand bedding for manhole. | 21d | 2026-07-01 A | 2026-07-20 A | SDR-2-CON-SE-ZA-1790 | 100% |  | 2026-12-06 | 2026-12-29 |  |  | SIC- Cost [25529.9]; Surveyor [51.21 h]; Labor [51.21 h]; Plumber [105.09 h]; Excavator [11.92 h]; Excavator Operator [12.07 h] | 25,529.87 | Z A |
|  | 3 | **Install Manholes** |  | 2026-07-08 | 2026-10-06 |  |  |  |  |  |  |  |  |  |  |
| SDR-2-CON-SE-ZA-1800 |  | Manhole Installation | 21d | 2026-07-08 A | 2026-10-06 A | SDR-2-CON-SE-ZA-1790, SDR-2-CON-SE-ZA-1850 | 100% |  | 2026-12-30 | 2027-01-23 |  |  | SIC- Cost [204239]; Surveyor [76.81 h]; Labor [76.81 h]; Plumber [143.3 h]; Excavator [12 h]; Excavator Operator [179.13 h] | 114,884.36 | Z A |
|  | 4 | **Testing** |  | 2026-08-27 | 2026-11-01 |  |  |  |  |  |  |  |  |  |  |
| SDR-2-CON-SE-ZA-1810 |  | Testing | 21d | 2026-08-27 A | 2026-11-01 | SDR-2-CON-SE-ZA-1800 FF | 30% | 0d | 2027-01-24 | 2027-02-16 | 116d | 0d | SIC- Cost [25529.9]; Surveyor [38.41 h]; Labor [38.41 h]; Plumber [76.43 h]; Excavator [13.83 h]; Excavator Operator [95.54 h] | 25,529.87 | Z A |
|  | 5 | **Backfilling** |  | 2026-11-11 | 2026-12-01 |  |  |  |  |  |  |  |  |  |  |
| SDR-2-CON-SE-ZA-1840 |  | Backfilling | 18d | 2026-11-11 | 2026-12-01 | SDR-2-CON-SE-ZA-1810 FS+9d |  |  |  |  | 116d | 107d | SIC- Cost [25529.9]; Surveyor [38.41 h]; Labor [1046.16 h]; Plumber [171.96 h]; Excavator [10.79 h]; Excavator Operator [214.96 h] | 51,059.72 | Z A |
|  | 8 | **LINE 10 AND LINE 11 ( PH2-A-MCG0 )** |  | 2026-06-16 | 2027-02-25 |  |  |  |  |  |  |  |  |  |  |
|  | 7 | **Pipes Work** |  | 2026-06-28 | 2027-02-13 |  |  |  |  |  |  |  |  |  |  |
|  | 1 | **Excavation** |  | 2026-06-28 | 2026-07-13 |  |  |  |  |  |  |  |  |  |  |
| SDR-2-CON-SE-ZA-2560 |  | Excavation for GRP Pipe 200mm Diameter Section 1 | 21d | 2026-06-28 A | 2026-07-08 A | SDR-2-CON-ST-ZA-4480 FS+5d, SDR-2-CON-ST-ZA-6190 | 100% |  | 2026-10-01 | 2026-10-25 |  |  | SIC- Cost [77504.4]; Surveyor [64.01 h]; Labor [64.01 h]; Plumber [81.48 h]; Excavator [14.89 h]; Excavator Operator [81.48 h] | 38,752.21 | Z A |
| SDR-2-CON-SE-ZA-1860 |  | Excavation for GRP Pipe 200mm Diameter Section 2 | 21d | 2026-07-01 A | 2026-07-13 A | SDR-2-CON-SE-ZA-2560 FS+3d | 100% |  | 2026-10-29 | 2026-11-22 |  |  | SIC- Cost [77504.4]; Surveyor [64.01 h]; Labor [64.01 h]; Plumber [81.48 h]; Excavator [14.89 h]; Excavator Operator [81.48 h] | 38,752.21 | Z A |

| ID | WBS | Activity | Duration | Start | Finish | Predecessors | Complete | Remaining | Planned start | Planned finish | Total float | Free float | Resources | Cost | ZONE A |
| --- | --- | --- | --- | --- | --- | --- | --- | --- | --- | --- | --- | --- | --- | --- | --- |
|  | 5 | **bedding Works** |  | 2026-07-14 | 2026-07-27 |  |  |  |  |  |  |  |  |  |  |
| SDR-2-CON-SE-ZA-1920 |  | Sand bedding for GRP Pipe 200mm Diameter | 21d | 2026-07-14 A | 2026-07-27 A | SDR-2-CON-SE-ZA-1860, SDR-2-CON-RW-ZG-1950 SS | 100% |  | 2026-11-23 | 2026-12-16 |  |  | SIC- Cost [77504.4]; Surveyor [64.01 h]; Labor [64.01 h]; Plumber [81.48 h]; Excavator [15.46 h]; Excavator Operator [81.48 h] | 19,376.09 | Z A |
|  | 2 | **Pipes Laying** |  | 2026-07-27 | 2026-11-01 |  |  |  |  |  |  |  |  |  |  |
| SDR-2-CON-SE-ZA-1870 |  | 200 mm GRP Pipe Laying | 21d | 2026-07-27 A | 2026-11-01 | SDR-2-CON-SE-ZA-1860, SDR-2-CON-SE-ZA-1920 | 75% | 1d | 2026-12-17 | 2027-01-10 | 111d | 68d | SIC- Cost [232513]; Surveyor [96.01 h]; Labor [96.01 h]; Plumber [143.3 h]; Excavator [14.79 h]; Excavator Operator [81.48 h] | 174,384.91 | Z A |
|  | 3 | **Testing** |  | 2026-08-27 | 2027-01-20 |  |  |  |  |  |  |  |  |  |  |
| SDR-2-CON-SE-ZA-1880 |  | Testing of 200 mm GRP Pipe. | 21d | 2026-08-27 A | 2027-01-20 | SDR-2-CON-ST-ZA-6160, SDR-2-CON-RW-ZA-2740, SDR-2-CON-SE-ZA-1870 FF | 30% | 0d | 2027-01-11 | 2027-02-03 | 43d | 0d | SIC- Cost [77504.4]; Surveyor [12.8 h]; Labor [12.8 h]; Plumber [67.9 h]; Excavator [7.17 h]; Excavator Operator [67.9 h] | 38,752.21 | Z A |
|  | 6 | **Backfilling** |  | 2027-01-20 | 2027-02-13 |  |  |  |  |  |  |  |  |  |  |
| SDR-2-CON-SE-ZA-1930 |  | Backfilling of 200 mm GRP Pipe. | 21d | 2027-01-20 | 2027-02-13 | SDR-2-CON-SE-ZA-1880 |  |  |  |  | 43d | 10d | SIC- Cost; Surveyor [12.8 h]; Labor [12.8 h]; Plumber [81.48 h]; Excavator [10.19 h]; Excavator Operator [81.48 h] | 77,504.4 | Z A |
|  | 4 | **Manholes** |  | 2026-06-16 | 2027-02-25 |  |  |  |  |  |  |  |  |  |  |
|  | 1 | **Excavation** |  | 2026-06-16 | 2026-07-15 |  |  |  |  |  |  |  |  |  |  |
| SDR-2-CON-SE-ZA-2570 |  | Excavation for manhole. Section 1 | 21d | 2026-06-16 A | 2026-07-01 A | SDR-2-CON-SE-ZA-2560 SS | 100% |  | 2026-10-01 | 2026-10-25 |  |  | SIC- Cost [25529.9]; Surveyor [51.21 h]; Labor [51.21 h]; Plumber [191.07 h]; Excavator [13.5 h]; Excavator Operator [238.84 h] | 19,147.4 | Z A |
| SDR-2-CON-SE-ZA-1890 |  | Excavation for manhole. Section 2 | 21d | 2026-07-01 A | 2026-07-15 A | SDR-2-CON-SE-ZA-2570 | 100% |  | 2026-10-26 | 2026-11-18 |  |  | SIC- Cost [25529.9]; Surveyor [51.21 h]; Labor [51.21 h]; Plumber [191.07 h]; Excavator [13.5 h]; Excavator Operator [238.84 h] | 19,147.4 | Z A |
|  | 2 | **bedding Works** |  | 2026-07-14 | 2026-07-27 |  |  |  |  |  |  |  |  |  |  |
| SDR-2-CON-SE-ZA-1950 |  | Sand bedding for manhole. | 21d | 2026-07-14 A | 2026-07-27 A | SDR-2-CON-SE-ZA-1890 | 100% |  | 2026-11-19 | 2026-12-13 |  |  | SIC- Cost [25529.9]; Surveyor [51.21 h]; Labor [51.21 h]; Plumber [133.75 h]; Excavator [12.69 h]; Excavator Operator [13.07 h] | 25,529.87 | Z A |
|  | 3 | **Install Manholes** |  | 2026-07-27 | 2026-10-06 |  |  |  |  |  |  |  |  |  |  |
| SDR-2-CON-SE-ZA-1900 |  | Manhole Installation | 21d | 2026-07-27 A | 2026-10-06 A | SDR-2-CON-SE-ZA-1890, SDR-2-CON-SE-ZA-1950 | 100% |  | 2026-12-14 | 2027-01-06 |  |  | SIC- Cost [204239]; Surveyor [76.81 h]; Labor [76.81 h]; Plumber [171.96 h]; Excavator [12 h]; Excavator Operator [214.96 h] | 114,884.36 | Z A |
|  | 4 | **Testing** |  | 2026-08-27 | 2027-01-20 |  |  |  |  |  |  |  |  |  |  |
| SDR-2-CON-SE-ZA-1910 |  | Testing | 21d | 2026-08-27 A | 2027-01-20 | SDR-2-CON-ST-ZA-6160 | 30% | 0d | 2027-01-07 | 2027-01-31 | 36d | 0d | SIC- Cost [25529.9]; Surveyor [38.41 h]; Labor [38.41 h]; Plumber [76.43 h]; Excavator [9.4 h]; Excavator Operator [95.54 h] | 25,529.87 | Z A |
|  | 5 | **Backfilling** |  | 2027-02-01 | 2027-02-25 |  |  |  |  |  |  |  |  |  |  |
| SDR-2-CON-SE-ZA-1940 |  | Backfilling | 21d | 2027-02-01 | 2027-02-25 | SDR-2-CON-SE-ZA-1910 FS+10d |  |  |  |  | 36d | 0d | SIC- Cost [25529.9]; Surveyor [38.41 h]; Labor [1036.07 h]; Plumber [191.07 h]; Excavator [10.32 h]; Excavator Operator [238.84 h] | 51,059.72 | Z A |
|  | 9 | **LINE 12 AND LINE 13 ( PH2-A-MCH0 )** |  | 2026-06-22 | 2026-12-20 |  |  |  |  |  |  |  |  |  |  |
|  | 7 | **Pipes Work** |  | 2026-06-22 | 2026-12-20 |  |  |  |  |  |  |  |  |  |  |
|  | 1 | **Excavation** |  | 2026-06-22 | 2026-07-13 |  |  |  |  |  |  |  |  |  |  |
| SDR-2-CON-SE-ZA-2580 |  | Excavation for GRP Pipe 200mm Diameter Section 1 | 21d | 2026-06-22 A | 2026-06-30 A | SDR-2-CON-ST-ZA-4630 FS+10d | 100% |  | 2026-10-07 | 2026-10-31 |  |  | SIC- Cost [77504.4]; Surveyor [64.01 h]; Labor [64.01 h]; Plumber [81.48 h]; Excavator [14.89 h]; Excavator Operator [334.38 h] | 38,752.21 | Z A |
| SDR-2-CON-SE-ZA-1960 |  | Excavation for GRP Pipe 200mm Diameter Section 2 | 21d | 2026-07-01 A | 2026-07-13 A | SDR-2-CON-SE-ZA-2580 FS+3d, SDR-2-CON-RW-ZA-1330 | 100% |  | 2026-11-04 | 2026-11-28 |  |  | SIC- Cost [77504.4]; Surveyor [64.01 h]; Labor [64.01 h]; Plumber [81.48 h]; Excavator [14.89 h]; Excavator Operator [334.38 h] | 38,752.21 | Z A |

| ID | WBS | Activity | Duration | Start | Finish | Predecessors | Complete | Remaining | Planned start | Planned finish | Total float | Free float | Resources | Cost | ZONE A | ZONE G |
| --- | --- | --- | --- | --- | --- | --- | --- | --- | --- | --- | --- | --- | --- | --- | --- | --- |
|  | 5 | **bedding Works** |  | 2026-07-14 | 2026-07-22 |  |  |  |  |  |  |  |  |  |  |  |
| SDR-2-CON-SE-ZA-2020 |  | Sand bedding for GRP Pipe 200mm Diameter | 21d | 2026-07-14 A | 2026-07-22 A | SDR-2-CON-RW-ZA-2990, SDR-2-CON-SE-ZA-1960 | 100% |  | 2026-11-29 | 2026-12-22 |  |  | SIC- Cost [77504.4]; Surveyor [64.01 h]; Labor [64.01 h]; Plumber [81.48 h]; Excavator [15 h]; Excavator Operator [16.09 h] | 19,376.09 | Z A |  |
|  | 2 | **Pipes Laying** |  | 2026-07-25 | 2026-11-01 |  |  |  |  |  |  |  |  |  |  |  |
| SDR-2-CON-SE-ZA-1970 |  | 200 mm GRP Pipe Laying | 21d | 2026-07-25 A | 2026-11-01 | SDR-2-CON-RW-ZA-2950, SDR-2-CON-SE-ZA-1960, SDR-2-CON-SE-ZA-2020 | 85% | 1d | 2026-12-23 | 2027-01-16 | 105d | 0d | SIC- Cost [232513]; Surveyor [96.01 h]; Labor [96.01 h]; Plumber [81.48 h]; Excavator [8.2 h]; Excavator Operator [81.48 h] | 174,384.91 | Z A |  |
|  | 3 | **Testing** |  | 2026-11-02 | 2026-11-25 |  |  |  |  |  |  |  |  |  |  |  |
| SDR-2-CON-SE-ZA-1980 |  | Testing of 200 mm GRP Pipe. | 21d | 2026-11-02 | 2026-11-25 | SDR-2-CON-RW-ZA-1200, SDR-2-CON-SE-ZA-1970 |  |  |  |  | 105d | 0d | SIC- Cost [77504.4]; Surveyor [12.8 h]; Labor [12.8 h]; Plumber [81.48 h]; Excavator [6 h]; Excavator Operator [81.48 h] | 38,752.21 | Z A |  |
|  | 6 | **Backfilling** |  | 2026-11-26 | 2026-12-20 |  |  |  |  |  |  |  |  |  |  |  |
| SDR-2-CON-SE-ZA-2030 |  | Backfilling of 200 mm GRP Pipe. | 21d | 2026-11-26 | 2026-12-20 | SDR-2-CON-SE-ZA-1980 |  |  |  |  | 105d | 99d | SIC- Cost [77504.4]; Surveyor [12.8 h]; Labor [113.58 h]; Plumber [81.48 h]; Excavator [11.95 h]; Excavator Operator [81.48 h] | 77,504.4 | Z A |  |
|  | 4 | **Manholes** |  | 2026-07-01 | 2026-12-13 |  |  |  |  |  |  |  |  |  |  |  |
|  | 1 | **Excavation** |  | 2026-07-01 | 2026-07-21 |  |  |  |  |  |  |  |  |  |  |  |
| SDR-2-CON-SE-ZA-2590 |  | Excavation for manhole. Section 1 | 21d | 2026-07-01 A | 2026-07-13 A | SDR-2-CON-SE-ZA-2580 | 100% |  | 2026-11-01 | 2026-11-24 |  |  | SIC- Cost [25529.9]; Surveyor [51.21 h]; Labor [51.21 h]; Plumber [171.96 h]; Excavator [14.89 h]; Excavator Operator [214.96 h] | 19,147.4 | Z A |  |
| SDR-2-CON-SE-ZA-1990 |  | Excavation for manhole. Section 2 | 21d | 2026-07-14 A | 2026-07-21 A | SDR-2-CON-SE-ZA-2590 | 100% |  | 2026-11-25 | 2026-12-19 |  |  | SIC- Cost [25529.9]; Surveyor [51.21 h]; Labor [51.21 h]; Plumber [171.96 h]; Excavator [14.89 h]; Excavator Operator [214.96 h] | 19,147.4 | Z A |  |
|  | 2 | **bedding Works** |  | 2026-07-14 | 2026-08-05 |  |  |  |  |  |  |  |  |  |  |  |
| SDR-2-CON-SE-ZA-2050 |  | Sand bedding for manhole. | 21d | 2026-07-14 A | 2026-08-05 A | SDR-2-CON-SE-ZA-1990 | 100% |  | 2026-12-20 | 2027-01-12 |  |  | SIC- Cost [25529.9]; Surveyor [51.21 h]; Labor [51.21 h]; Plumber [114.64 h]; Excavator [17 h]; Excavator Operator [17.1 h] | 25,529.87 | Z A |  |
|  | 3 | **Install Manholes** |  | 2026-07-27 | 2026-10-06 |  |  |  |  |  |  |  |  |  |  |  |
| SDR-2-CON-SE-ZA-2000 |  | Manhole Installation | 21d | 2026-07-27 A | 2026-10-06 A | SDR-2-CON-SE-ZA-1990, SDR-2-CON-SE-ZA-2050 | 100% |  | 2027-01-13 | 2027-02-06 |  |  | SIC- Cost [204239]; Surveyor [76.81 h]; Labor [76.81 h]; Plumber [152.86 h]; Excavator [14.56 h]; Excavator Operator [191.07 h] | 114,884.36 | Z A |  |
|  | 4 | **Testing** |  | 2026-11-01 | 2026-11-24 |  |  |  |  |  |  |  |  |  |  |  |
| SDR-2-CON-SE-ZA-2010 |  | Testing | 21d | 2026-11-01 | 2026-11-24 | SDR-2-CON-SE-ZA-2000, SDR-2-CON-SE-ZA-2000 FF |  |  |  |  | 106d | 0d | SIC- Cost [25529.9]; Surveyor [38.41 h]; Labor [38.41 h]; Plumber [66.88 h]; Excavator [6 h]; Excavator Operator [83.59 h] | 25,529.87 | Z A |  |
|  | 5 | **Backfilling** |  | 2026-11-25 | 2026-12-13 |  |  |  |  |  |  |  |  |  |  |  |
| SDR-2-CON-SE-ZA-2040 |  | Backfilling | 16d | 2026-11-25 | 2026-12-13 | SDR-2-CON-SE-ZA-2010 |  |  |  |  | 106d | 100d | SIC- Cost [25529.9]; Surveyor [38.41 h]; Labor [1046.15 h]; Plumber [171.96 h]; Excavator [11.95 h]; Excavator Operator [214.96 h] | 51,059.72 | Z A |  |
|  | ZG | **ZONE G** |  | 2026-05-18 | 2027-01-30 |  |  |  |  |  |  |  |  |  |  |  |
|  | 3 | **LINE 49 AND LINE 51 ( PH2-G-MCE0 )** |  | 2026-05-19 | 2026-11-10 |  |  |  |  |  |  |  |  |  |  |  |
|  | 7 | **Pipes Work** |  | 2026-06-01 | 2026-08-27 |  |  |  |  |  |  |  |  |  |  |  |
|  | 1 | **Excavation** |  | 2026-06-01 | 2026-06-15 |  |  |  |  |  |  |  |  |  |  |  |
| SDR-2-CON-SE-ZA-2600 |  | Excavation for GRP Pipe 200mm Diameter Section 1 | 21d | 2026-06-01 A | 2026-06-08 A | SDR-2-CON-ST-ZA-5380 | 100% |  | 2026-10-14 | 2026-11-07 |  |  | SIC- Cost [77504.4]; Surveyor [64.01 h]; Labor [64.01 h]; Plumber [67.9 h]; Excavator [14.89 h]; Excavator Operator [67.9 h] | 38,752.21 |  | Z G |
| SDR-2-CON-SE-ZA-2060 |  | Excavation for GRP Pipe 200mm Diameter Section 2 | 21d | 2026-06-08 A | 2026-06-15 A | SDR-2-CON-SE-ZA-2600 | 100% |  | 2026-11-08 | 2026-12-01 |  |  | SIC- Cost [77504.4]; Surveyor [64.01 h]; Labor [64.01 h]; Plumber [67.9 h]; Excavator [14.89 h]; Excavator Operator [67.9 h] | 38,752.21 |  | Z G |

| ID | WBS | Activity | Duration | Start | Finish | Predecessors | Complete | Remaining | Planned start | Planned finish | Total float | Free float | Resources | Cost | ZONE G |
| --- | --- | --- | --- | --- | --- | --- | --- | --- | --- | --- | --- | --- | --- | --- | --- |
|  | 5 | **bedding Works** |  | 2026-06-15 | 2026-06-25 |  |  |  |  |  |  |  |  |  |  |
| SDR-2-CON-SE-ZA-2120 |  | Sand bedding for GRP Pipe 200mm Diameter | 21d | 2026-06-15 A | 2026-06-25 A | SDR-2-CON-SE-ZA-2060 | 100% |  | 2026-12-02 | 2026-12-26 |  |  | SIC- Cost [77504.4]; Surveyor [64.01 h]; Labor [64.01 h]; Plumber [81.48 h]; Excavator [9.13 h]; Excavator Operator [10.06 h] | 19,376.09 | Z G |
|  | 2 | **Pipes Laying** |  | 2026-06-22 | 2026-07-06 |  |  |  |  |  |  |  |  |  |  |
| SDR-2-CON-SE-ZA-2070 |  | 200 mm GRP Pipe Laying | 21d | 2026-06-22 A | 2026-07-06 A | SDR-2-CON-RW-ZA-1340, SDR-2-CON-SE-ZA-2060, SDR-2-CON-SE-ZA-2120 | 100% |  | 2026-12-27 | 2027-01-19 |  |  | SIC- Cost [232513]; Surveyor [67.9 h]; Labor [67.9 h]; Plumber [81.48 h]; Excavator [5.97 h]; Excavator Operator [67.9 h] | 174,384.91 | Z G |
|  | 3 | **Testing** |  | 2026-07-07 | 2026-08-05 |  |  |  |  |  |  |  |  |  |  |
| SDR-2-CON-SE-ZA-2080 |  | Testing of 200 mm GRP Pipe. | 21d | 2026-07-07 A | 2026-08-05 A | SDR-2-CON-SE-ZA-2070 | 100% |  | 2027-01-20 | 2027-02-13 |  |  | SIC- Cost [77504.4]; Surveyor [12.8 h]; Labor [12.8 h]; Plumber [76.43 h]; Excavator [6 h]; Excavator Operator [95.54 h] | 38,752.21 | Z G |
|  | 6 | **Backfilling** |  | 2026-08-12 | 2026-08-27 |  |  |  |  |  |  |  |  |  |  |
| SDR-2-CON-SE-ZA-2130 |  | Backfilling of 200 mm GRP Pipe. | 21d | 2026-08-12 A | 2026-08-27 A | SDR-2-CON-SE-ZA-2080 | 100% |  | 2027-02-14 | 2027-03-15 |  |  | SIC- Cost; Surveyor [12.8 h]; Labor [1020.55 h]; Plumber [81.48 h]; Excavator [12.67 h]; Excavator Operator [81.48 h] | 77,504.4 | Z G |
|  | 4 | **Manholes** |  | 2026-05-19 | 2026-11-10 |  |  |  |  |  |  |  |  |  |  |
|  | 1 | **Excavation** |  | 2026-05-19 | 2026-06-06 |  |  |  |  |  |  |  |  |  |  |
| SDR-2-CON-SE-ZA-2610 |  | Excavation for manhole. Section 1 | 21d | 2026-05-19 A | 2026-06-01 A | SDR-2-CON-SE-ZA-2600 SS | 100% |  | 2026-10-14 | 2026-11-07 |  |  | SIC- Cost [25529.9]; Surveyor [51.21 h]; Labor [51.21 h]; Plumber [200.63 h]; Excavator [14.89 h]; Excavator Operator [250.78 h] | 19,147.4 | Z G |
| SDR-2-CON-SE-ZA-2090 |  | Excavation for manhole. Section 2 | 21d | 2026-05-31 A | 2026-06-06 A | SDR-2-CON-SE-ZA-2610 FS+3d | 100% |  | 2026-11-11 | 2026-12-05 |  |  | SIC- Cost [25529.9]; Surveyor [51.21 h]; Labor [51.21 h]; Plumber [200.63 h]; Excavator [14.89 h]; Excavator Operator [250.78 h] | 19,147.4 | Z G |
|  | 2 | **bedding Works** |  | 2026-06-01 | 2026-06-11 |  |  |  |  |  |  |  |  |  |  |
| SDR-2-CON-SE-ZA-2150 |  | Sand bedding for manhole. | 21d | 2026-06-01 A | 2026-06-11 A | SDR-2-CON-SE-ZA-2090 | 100% |  | 2026-12-06 | 2026-12-29 |  |  | SIC- Cost [25529.9]; Surveyor [51.21 h]; Labor [51.21 h]; Plumber [133.75 h]; Excavator [9.13 h]; Excavator Operator [10.06 h] | 25,529.87 | Z G |
|  | 3 | **Install Manholes** |  | 2026-05-31 | 2026-08-31 |  |  |  |  |  |  |  |  |  |  |
| SDR-2-CON-SE-ZA-2100 |  | Manhole Installation | 21d | 2026-05-31 A | 2026-08-31 A | SDR-2-CON-SE-ZA-2090, SDR-2-CON-SE-ZA-2150 | 100% |  | 2026-12-30 | 2027-01-23 |  |  | SIC- Cost [204239]; Surveyor [76.81 h]; Labor [76.81 h]; Plumber [162.41 h]; Excavator [5 h]; Excavator Operator [203.01 h] | 114,884.36 | Z G |
|  | 4 | **Testing** |  | 2026-09-07 | 2026-11-10 |  |  |  |  |  |  |  |  |  |  |
| SDR-2-CON-SE-ZA-2110 |  | Testing | 21d | 2026-09-07 A | 2026-11-10 | SDR-2-CON-SE-ZA-2100, SDR-2-CON-SE-ZA-2100 FF | 10% | 9d | 2027-01-24 | 2027-02-16 | 133d | 0d | SIC- Cost [25529.9]; Surveyor [38.41 h]; Labor [38.41 h]; Plumber [76.43 h]; Excavator [6 h]; Excavator Operator [95.54 h] | 25,529.87 | Z G |
|  | 5 | **Backfilling** |  | 2026-08-20 | 2026-08-31 |  |  |  |  |  |  |  |  |  |  |
| SDR-2-CON-SE-ZA-2140 |  | Backfilling | 21d | 2026-08-20 A | 2026-08-31 A | SDR-2-CON-SE-ZA-2110 SS | 100% |  | 2027-02-24 | 2027-03-24 |  |  | SIC- Cost [25529.9]; Surveyor [38.41 h]; Labor [1046.15 h]; Plumber [181.52 h]; Excavator [12.67 h]; Excavator Operator [226.9 h] | 51,059.72 | Z G |
|  | 4 | **LINE 50 ( PH2-G-MCD0 )** |  | 2026-05-23 | 2027-01-30 |  |  |  |  |  |  |  |  |  |  |
|  | 7 | **Pipes Work** |  | 2026-06-01 | 2027-01-30 |  |  |  |  |  |  |  |  |  |  |
|  | 1 | **Excavation** |  | 2026-06-01 | 2026-06-15 |  |  |  |  |  |  |  |  |  |  |
| SDR-2-CON-SE-ZA-2620 |  | Excavation for GRP Pipe 200mm Diameter Section 1 | 21d | 2026-06-01 A | 2026-06-08 A | SDR-2-CON-ST-ZA-5380 FS+5d | 100% |  | 2026-10-20 | 2026-11-12 |  |  | SIC- Cost [77504.4]; Surveyor [64.01 h]; Labor [64.01 h]; Plumber [81.48 h]; Excavator [14.89 h]; Excavator Operator [81.48 h] | 38,752.21 | Z G |
| SDR-2-CON-SE-ZA-2160 |  | Excavation for GRP Pipe 200mm Diameter Section 2 | 21d | 2026-06-08 A | 2026-06-15 A | SDR-2-CON-SE-ZA-2620 FS+3d | 100% |  | 2026-11-17 | 2026-12-10 |  |  | SIC- Cost [77504.4]; Surveyor [64.01 h]; Labor [64.01 h]; Plumber [81.48 h]; Excavator [14.89 h]; Excavator Operator [81.48 h] | 38,752.21 | Z G |

| ID | WBS | Activity | Duration | Start | Finish | Predecessors | Complete | Remaining | Planned start | Planned finish | Total float | Free float | Resources | Cost | ZONE G |
| --- | --- | --- | --- | --- | --- | --- | --- | --- | --- | --- | --- | --- | --- | --- | --- |
|  | 5 | **bedding Works** |  | 2026-06-15 | 2026-07-16 |  |  |  |  |  |  |  |  |  |  |
| SDR-2-CON-SE-ZA-2220 |  | Sand bedding for GRP Pipe 200mm Diameter | 21d | 2026-06-15 A | 2026-07-16 A | SDR-2-CON-SE-ZA-2160 | 100% |  | 2026-12-12 | 2027-01-04 |  |  | SIC- Cost [77504.4]; Surveyor [64.01 h]; Labor [64.01 h]; Plumber [81.48 h]; Excavator [6.54 h]; Excavator Operator [6.03 h] | 19,376.09 | Z G |
|  | 2 | **Pipes Laying** |  | 2026-06-22 | 2026-07-20 |  |  |  |  |  |  |  |  |  |  |
| SDR-2-CON-SE-ZA-2170 |  | 200 mm GRP Pipe Laying | 21d | 2026-06-22 A | 2026-07-20 A | SDR-2-CON-ST-ZA-6160, SDR-2-CON-SE-ZA-2160, SDR-2-CON-SE-ZA-2220 | 100% |  | 2027-01-05 | 2027-01-28 |  |  | SIC- Cost [232513]; Surveyor [96.01 h]; Labor [96.01 h]; Plumber [81.48 h]; Excavator [5 h]; Excavator Operator [81.48 h] | 174,384.91 | Z G |
|  | 3 | **Testing** |  | 2026-09-07 | 2027-01-30 |  |  |  |  |  |  |  |  |  |  |
| SDR-2-CON-SE-ZA-2180 |  | Testing of 200 mm GRP Pipe. | 21d | 2026-09-07 A | 2027-01-30 | SDR-2-CON-SE-ZA-2170 | 10% | 9d | 2027-01-30 | 2027-02-23 | 64d | 0d | SIC- Cost [77504.4]; Surveyor [12.8 h]; Labor [12.8 h]; Plumber [76.43 h]; Excavator [6 h]; Excavator Operator [95.54 h] | 38,752.21 | Z G |
|  | 6 | **Backfilling** |  | 2026-08-20 | 2026-08-31 |  |  |  |  |  |  |  |  |  |  |
| SDR-2-CON-SE-ZA-2230 |  | Backfilling of 200 mm GRP Pipe. | 21d | 2026-08-20 A | 2026-08-31 A | SDR-2-CON-SE-ZA-2180 SS | 100% |  | 2027-02-24 | 2027-03-24 |  |  | SIC- Cost; Surveyor [12.8 h]; Labor [1020.55 h]; Plumber [67.9 h]; Excavator [12.32 h]; Excavator Operator [67.9 h] | 77,504.4 | Z G |
|  | 4 | **Manholes** |  | 2026-05-23 | 2026-11-10 |  |  |  |  |  |  |  |  |  |  |
|  | 1 | **Excavation** |  | 2026-05-23 | 2026-06-06 |  |  |  |  |  |  |  |  |  |  |
| SDR-2-CON-SE-ZA-2630 |  | Excavation for manhole. Section 1 | 21d | 2026-05-23 A | 2026-06-03 A | SDR-2-CON-SE-ZA-2620 SS | 100% |  | 2026-10-20 | 2026-11-12 |  |  | SIC- Cost; Surveyor [19.26 h]; Labor [51.21 h]; Plumber [238.84 h]; Excavator [14.89 h]; Excavator Operator [14.45 h] | 19,147.4 | Z G |
| SDR-2-CON-SE-ZA-2190 |  | Excavation for manhole. Section 2 | 21d | 2026-06-01 A | 2026-06-06 A | SDR-2-CON-SE-ZA-2630 FS+3d | 100% |  | 2026-11-17 | 2026-12-10 |  |  | SIC- Cost [25529.9]; Surveyor [51.21 h]; Labor [51.21 h]; Plumber [238.84 h]; Excavator [14.89 h]; Excavator Operator [298.55 h] | 19,147.4 | Z G |
|  | 2 | **bedding Works** |  | 2026-06-01 | 2026-06-08 |  |  |  |  |  |  |  |  |  |  |
| SDR-2-CON-SE-ZA-2250 |  | Sand bedding for manhole. | 21d | 2026-06-01 A | 2026-06-08 A | SDR-2-CON-SE-ZA-2190 | 100% |  | 2026-12-12 | 2027-01-04 |  |  | SIC- Cost [25529.9]; Surveyor [51.21 h]; Labor [51.21 h]; Plumber [124.2 h]; Excavator [9.13 h]; Excavator Operator [9.05 h] | 25,529.87 | Z G |
|  | 3 | **Install Manholes** |  | 2026-06-15 | 2026-06-27 |  |  |  |  |  |  |  |  |  |  |
| SDR-2-CON-SE-ZA-2200 |  | Manhole Installation | 21d | 2026-06-15 A | 2026-06-27 A | SDR-2-CON-SE-ZA-2190, SDR-2-CON-SE-ZA-2250 | 100% |  | 2027-01-05 | 2027-01-28 |  |  | SIC- Cost [204239]; Surveyor [76.81 h]; Labor [76.81 h]; Plumber [143.3 h]; Excavator [5 h]; Excavator Operator [179.13 h] | 114,884.36 | Z G |
|  | 4 | **Testing** |  | 2026-09-07 | 2026-11-10 |  |  |  |  |  |  |  |  |  |  |
| SDR-2-CON-SE-ZA-2210 |  | Testing | 21d | 2026-09-07 A | 2026-11-10 | SDR-2-CON-SE-ZA-2200, SDR-2-CON-SE-ZA-2200 FF | 10% | 9d | 2027-01-30 | 2027-02-23 | 128d | 0d | SIC- Cost [25529.9]; Surveyor [38.41 h]; Labor [38.41 h]; Plumber [76.43 h]; Excavator [20 h]; Excavator Operator [95.54 h] | 25,529.87 | Z G |
|  | 5 | **Backfilling** |  | 2026-08-20 | 2026-08-31 |  |  |  |  |  |  |  |  |  |  |
| SDR-2-CON-SE-ZA-2240 |  | Backfilling | 17d | 2026-08-20 A | 2026-08-31 A | SDR-2-CON-SE-ZA-2210 SS | 100% |  | 2027-03-02 | 2027-03-25 |  |  | SIC- Cost [25529.9]; Surveyor [38.41 h]; Labor [1046.15 h]; Plumber [171.96 h]; Excavator [10.71 h]; Excavator Operator [214.96 h] | 51,059.72 | Z G |
|  | 5 | **LINE 52 AND LINE 53 ( PH2-G-MCF0 )** |  | 2026-05-21 | 2026-11-10 |  |  |  |  |  |  |  |  |  |  |
|  | 7 | **Pipes Work** |  | 2026-05-21 | 2026-08-31 |  |  |  |  |  |  |  |  |  |  |
|  | 1 | **Excavation** |  | 2026-05-21 | 2026-06-06 |  |  |  |  |  |  |  |  |  |  |
| SDR-2-CON-SE-ZA-2640 |  | Excavation for GRP Pipe 200mm Diameter Section 1 | 21d | 2026-05-21 A | 2026-06-01 A | SDR-2-CON-ST-ZA-5530 | 100% |  | 2026-09-24 | 2026-10-18 |  |  | SIC- Cost [77504.4]; Surveyor [64.01 h]; Labor [64.01 h]; Plumber [81.48 h]; Excavator [20 h]; Excavator Operator [81.48 h] | 38,752.21 | Z G |
| SDR-2-CON-SE-ZA-2260 |  | Excavation for GRP Pipe 200mm Diameter Section 2 | 21d | 2026-06-01 A | 2026-06-06 A | SDR-2-CON-SE-ZA-2640 FS+3d | 100% |  | 2026-10-22 | 2026-11-15 |  |  | SIC- Cost [77504.4]; Surveyor [64.01 h]; Labor [64.01 h]; Plumber [81.48 h]; Excavator [20 h]; Excavator Operator [81.48 h] | 38,752.21 | Z G |

| ID | WBS | Activity | Duration | Start | Finish | Predecessors | Complete | Remaining | Planned start | Planned finish | Total float | Free float | Resources | Cost | ZONE G |
| --- | --- | --- | --- | --- | --- | --- | --- | --- | --- | --- | --- | --- | --- | --- | --- |
|  | 5 | **bedding Works** |  | 2026-05-21 | 2026-06-08 |  |  |  |  |  |  |  |  |  |  |
| SDR-2-CON-SE-ZA-2320 |  | Sand bedding for GRP Pipe 200mm Diameter | 21d | 2026-05-21 A | 2026-06-08 A | SDR-2-CON-SE-ZA-2260 | 100% |  | 2026-11-16 | 2026-12-09 |  |  | SIC- Cost [77504.4]; Surveyor [64.01 h]; Labor [64.01 h]; Plumber [81.48 h]; Excavator [11.31 h]; Excavator Operator [12.07 h] | 19,376.09 | Z G |
|  | 2 | **Pipes Laying** |  | 2026-06-09 | 2026-07-01 |  |  |  |  |  |  |  |  |  |  |
| SDR-2-CON-SE-ZA-2270 |  | 200 mm GRP Pipe Laying | 21d | 2026-06-09 A | 2026-07-01 A | SDR-2-CON-SE-ZA-2260, SDR-2-CON-SE-ZA-2320 | 100% |  | 2026-12-10 | 2027-01-03 |  |  | SIC- Cost [232513]; Surveyor [96.01 h]; Labor [96.01 h]; Plumber [81.48 h]; Excavator [20 h]; Excavator Operator [81.48 h] | 174,384.91 | Z G |
|  | 3 | **Testing** |  | 2026-08-20 | 2026-08-27 |  |  |  |  |  |  |  |  |  |  |
| SDR-2-CON-SE-ZA-2280 |  | Testing of 200 mm GRP Pipe. | 21d | 2026-08-20 A | 2026-08-27 A | SDR-2-CON-SE-ZA-2270 | 100% |  | 2027-01-04 | 2027-01-27 |  |  | SIC- Cost [77504.4]; Surveyor [12.8 h]; Labor [12.8 h]; Plumber [76.43 h]; Excavator [6 h]; Excavator Operator [95.54 h] | 38,752.21 | Z G |
|  | 6 | **Backfilling** |  | 2026-08-26 | 2026-08-31 |  |  |  |  |  |  |  |  |  |  |
| SDR-2-CON-SE-ZA-2330 |  | Backfilling of 200 mm GRP Pipe. | 21d | 2026-08-26 A | 2026-08-31 A | SDR-2-CON-SE-ZA-2280 | 100% |  | 2027-01-28 | 2027-02-21 |  |  | SIC- Cost; Surveyor [12.8 h]; Labor [12.8 h]; Plumber [81.48 h]; Excavator [12.32 h]; Excavator Operator [81.48 h] | 77,504.4 | Z G |
|  | 4 | **Manholes** |  | 2026-05-23 | 2026-11-10 |  |  |  |  |  |  |  |  |  |  |
|  | 1 | **Excavation** |  | 2026-05-23 | 2026-06-06 |  |  |  |  |  |  |  |  |  |  |
| SDR-2-CON-SE-ZA-2650 |  | Excavation for manhole. Section 1 | 21d | 2026-05-23 A | 2026-06-03 A | SDR-2-CON-SE-ZA-2640 SS | 100% |  | 2026-09-24 | 2026-10-18 |  |  | SIC- Cost [25529.9]; Surveyor [51.21 h]; Labor [51.21 h]; Plumber [248.39 h]; Excavator [14.89 h]; Excavator Operator [310.49 h] | 19,147.4 | Z G |
| SDR-2-CON-SE-ZA-2290 |  | Excavation for manhole. Section 2 | 21d | 2026-06-01 A | 2026-06-06 A | SDR-2-CON-SE-ZA-2650 FS+3d | 100% |  | 2026-10-22 | 2026-11-15 |  |  | SIC- Cost [25529.9]; Surveyor [51.21 h]; Labor [51.21 h]; Plumber [248.39 h]; Excavator [14.89 h]; Excavator Operator [310.49 h] | 19,147.4 | Z G |
|  | 2 | **bedding Works** |  | 2026-05-30 | 2026-06-08 |  |  |  |  |  |  |  |  |  |  |
| SDR-2-CON-SE-ZA-2350 |  | Sand bedding for manhole. | 21d | 2026-05-30 A | 2026-06-08 A | SDR-2-CON-SE-ZA-2290 | 100% |  | 2026-11-16 | 2026-12-09 |  |  | SIC- Cost [25529.9]; Surveyor [51.21 h]; Labor [51.21 h]; Plumber [133.75 h]; Excavator [10.79 h]; Excavator Operator [11.06 h] | 25,529.87 | Z G |
|  | 3 | **Install Manholes** |  | 2026-06-11 | 2026-06-22 |  |  |  |  |  |  |  |  |  |  |
| SDR-2-CON-SE-ZA-2300 |  | Manhole Installation | 21d | 2026-06-11 A | 2026-06-22 A | SDR-2-CON-SE-ZA-2290, SDR-2-CON-SE-ZA-2350 | 100% |  | 2026-12-10 | 2027-01-03 |  |  | SIC- Cost [204239]; Surveyor [76.81 h]; Labor [76.81 h]; Plumber [143.3 h]; Excavator [13.13 h]; Excavator Operator [179.13 h] | 114,884.36 | Z G |
|  | 4 | **Testing** |  | 2026-09-07 | 2026-11-10 |  |  |  |  |  |  |  |  |  |  |
| SDR-2-CON-SE-ZA-2310 |  | Testing | 21d | 2026-09-07 A | 2026-11-10 | SDR-2-CON-SE-ZA-2300, SDR-2-CON-SE-ZA-2300 FF | 10% | 9d | 2027-01-04 | 2027-01-27 | 126d | 0d | SIC- Cost [25529.9]; Surveyor [38.41 h]; Labor [38.41 h]; Plumber [76.43 h]; Excavator [6 h]; Excavator Operator [95.54 h] | 25,529.87 | Z G |
|  | 5 | **Backfilling** |  | 2026-08-20 | 2026-08-31 |  |  |  |  |  |  |  |  |  |  |
| SDR-2-CON-SE-ZA-2340 |  | Backfilling | 21d | 2026-08-20 A | 2026-08-31 A | SDR-2-CON-SE-ZA-2310 SS | 100% |  | 2027-02-01 | 2027-02-25 |  |  | SIC- Cost [25529.9]; Surveyor [38.41 h]; Labor [38.41 h]; Plumber [18.99 h]; Excavator [11.95 h]; Excavator Operator [73.92 h] | 51,059.72 | Z G |
|  | 6 | **LINE 54 AND LINE 55 ( PH2-G-MCG0 )** |  | 2026-05-18 | 2026-11-10 |  |  |  |  |  |  |  |  |  |  |
|  | 7 | **Pipes Work** |  | 2026-06-08 | 2026-08-31 |  |  |  |  |  |  |  |  |  |  |
|  | 1 | **Excavation** |  | 2026-06-08 | 2026-06-29 |  |  |  |  |  |  |  |  |  |  |
| SDR-2-CON-SE-ZA-2660 |  | Excavation for GRP Pipe 200mm Diameter Section 1 | 21d | 2026-06-08 A | 2026-06-21 A | SDR-2-CON-ST-ZA-5980 | 100% |  | 2026-10-08 | 2026-11-01 |  |  | SIC- Cost [77504.4]; Surveyor [64.01 h]; Labor [64.01 h]; Plumber [81.48 h]; Excavator [14.89 h]; Excavator Operator [81.48 h] | 38,752.21 | Z G |
| SDR-2-CON-SE-ZA-2360 |  | Excavation for GRP Pipe 200mm Diameter Section 2 | 21d | 2026-06-22 A | 2026-06-29 A | SDR-2-CON-SE-ZA-2660 FS+3d | 100% |  | 2026-11-05 | 2026-11-29 |  |  | SIC- Cost [77504.4]; Surveyor [64.01 h]; Labor [64.01 h]; Plumber [81.48 h]; Excavator [14.89 h]; Excavator Operator [81.48 h] | 38,752.21 | Z G |

| ID | WBS | Activity | Duration | Start | Finish | Predecessors | Complete | Remaining | Planned start | Planned finish | Total float | Free float | Resources | Cost | ZONE G | ZONE A |
| --- | --- | --- | --- | --- | --- | --- | --- | --- | --- | --- | --- | --- | --- | --- | --- | --- |
|  | 5 | **bedding Works** |  | 2026-06-26 | 2026-07-01 |  |  |  |  |  |  |  |  |  |  |  |
| SDR-2-CON-SE-ZA-2420 |  | Sand bedding for GRP Pipe 200mm Diameter | 21d | 2026-06-26 A | 2026-07-01 A | SDR-2-CON-SE-ZA-2360 | 100% |  | 2026-11-30 | 2026-12-23 |  |  | SIC- Cost [77504.4]; Surveyor [64.01 h]; Labor [64.01 h]; Plumber [81.48 h]; Excavator [20 h]; Excavator Operator [20.11 h] | 19,376.09 | Z G |  |
|  | 2 | **Pipes Laying** |  | 2026-06-25 | 2026-07-04 |  |  |  |  |  |  |  |  |  |  |  |
| SDR-2-CON-SE-ZA-2370 |  | 200 mm GRP Pipe Laying | 21d | 2026-06-25 A | 2026-07-04 A | SDR-2-CON-RW-ZG-1360, SDR-2-CON-SE-ZA-2360, SDR-2-CON-SE-ZA-2420 | 100% |  | 2026-12-24 | 2027-01-17 |  |  | SIC- Cost [232513]; Surveyor [67.9 h]; Labor [67.9 h]; Plumber [67.9 h]; Excavator [7.18 h]; Excavator Operator [67.9 h] | 174,384.91 | Z G |  |
|  | 3 | **Testing** |  | 2026-08-13 | 2026-08-20 |  |  |  |  |  |  |  |  |  |  |  |
| SDR-2-CON-SE-ZA-2380 |  | Testing of 200 mm GRP Pipe. | 21d | 2026-08-13 A | 2026-08-20 A | SDR-2-CON-SE-ZA-2370, SDR-2-CON-RW-ZG-1060 SS | 100% |  | 2027-01-18 | 2027-02-10 |  |  | SIC- Cost [77504.4]; Surveyor [12.8 h]; Labor [12.8 h]; Plumber [76.43 h]; Excavator [6 h]; Excavator Operator [95.54 h] | 38,752.21 | Z G |  |
|  | 6 | **Backfilling** |  | 2026-08-20 | 2026-08-31 |  |  |  |  |  |  |  |  |  |  |  |
| SDR-2-CON-SE-ZA-2430 |  | Backfilling of 200 mm GRP Pipe. | 21d | 2026-08-20 A | 2026-08-31 A | SDR-2-CON-SE-ZA-2380 | 100% |  | 2027-02-11 | 2027-03-08 |  |  | SIC- Cost [77504.4]; Surveyor [12.8 h]; Labor [1020.55 h]; Plumber [81.48 h]; Excavator [11.14 h]; Excavator Operator [81.48 h] | 77,504.4 | Z G |  |
|  | 4 | **Manholes** |  | 2026-05-18 | 2026-11-10 |  |  |  |  |  |  |  |  |  |  |  |
|  | 1 | **Excavation** |  | 2026-05-18 | 2026-06-06 |  |  |  |  |  |  |  |  |  |  |  |
| SDR-2-CON-SE-ZA-2670 |  | Excavation for manhole. Section 1 | 21d | 2026-05-18 A | 2026-05-31 A | SDR-2-CON-SE-ZA-2660 SS | 100% |  | 2026-10-08 | 2026-11-01 |  |  | SIC- Cost [25529.9]; Surveyor [51.21 h]; Labor [51.21 h]; Plumber [229.29 h]; Excavator [14.89 h]; Excavator Operator [286.61 h] | 19,147.4 | Z G |  |
| SDR-2-CON-SE-ZA-2390 |  | Excavation for manhole. Section 2 | 21d | 2026-06-01 A | 2026-06-06 A | SDR-2-CON-SE-ZA-2670 FS+3d, SDR-2-CON-RW-ZG-1200 | 100% |  | 2026-11-05 | 2026-11-29 |  |  | SIC- Cost [25529.9]; Surveyor [51.21 h]; Labor [51.21 h]; Plumber [229.29 h]; Excavator [14.89 h]; Excavator Operator [286.61 h] | 19,147.4 | Z G |  |
|  | 2 | **bedding Works** |  | 2026-06-06 | 2026-06-14 |  |  |  |  |  |  |  |  |  |  |  |
| SDR-2-CON-SE-ZA-2450 |  | Sand bedding for manhole. | 21d | 2026-06-06 A | 2026-06-14 A | SDR-2-CON-SE-ZA-2390 | 100% |  | 2026-11-30 | 2026-12-23 |  |  | SIC- Cost [25529.9]; Surveyor [51.21 h]; Labor [51.21 h]; Plumber [114.64 h]; Excavator [11.15 h]; Excavator Operator [12.07 h] | 25,529.87 | Z G |  |
|  | 3 | **Install Manholes** |  | 2026-06-27 | 2026-07-05 |  |  |  |  |  |  |  |  |  |  |  |
| SDR-2-CON-SE-ZA-2400 |  | Manhole Installation | 21d | 2026-06-27 A | 2026-07-05 A | SDR-2-CON-SE-ZA-2390, SDR-2-CON-SE-ZA-2450 | 100% |  | 2026-12-24 | 2027-01-17 |  |  | SIC- Cost [204239]; Surveyor [76.81 h]; Labor [76.81 h]; Plumber [133.75 h]; Excavator [7.28 h]; Excavator Operator [167.19 h] | 114,884.36 | Z G |  |
|  | 4 | **Testing** |  | 2026-09-07 | 2026-11-10 |  |  |  |  |  |  |  |  |  |  |  |
| SDR-2-CON-SE-ZA-2410 |  | Testing | 21d | 2026-09-07 A | 2026-11-10 | SDR-2-CON-SE-ZA-2400, SDR-2-CON-SE-ZA-2400 FF | 10% | 9d | 2027-01-18 | 2027-02-10 | 139d | 0d | SIC- Cost [25529.9]; Surveyor [38.41 h]; Labor [38.41 h]; Plumber [76.43 h]; Excavator [7.17 h]; Excavator Operator [95.54 h] | 25,529.87 | Z G |  |
|  | 5 | **Backfilling** |  | 2026-08-20 | 2026-08-31 |  |  |  |  |  |  |  |  |  |  |  |
| SDR-2-CON-SE-ZA-2440 |  | Backfilling | 21d | 2026-08-20 A | 2026-08-31 A | SDR-2-CON-SE-ZA-2410 SS | 100% |  | 2027-02-23 | 2027-03-23 |  |  | SIC- Cost [25529.9]; Surveyor [38.41 h]; Labor [1046.16 h]; Plumber [162.41 h]; Excavator [10.19 h]; Excavator Operator [203.01 h] | 51,059.72 | Z G |  |
|  | TSE | **TSE Network** |  | 2026-08-06 | 2027-06-19 |  |  |  |  |  |  |  |  |  |  |  |
|  | ZA | **ZONE A** |  | 2026-08-06 | 2027-05-22 |  |  |  |  |  |  |  |  |  |  |  |
|  | 1 | **TSE NETWORK IN ( PH2-COL-MC10 )** |  | 2026-08-09 | 2027-05-04 |  |  |  |  |  |  |  |  |  |  |  |
|  | 6 | **Pipes Work** |  | 2026-08-09 | 2027-05-04 |  |  |  |  |  |  |  |  |  |  |  |
|  | 1 | **Excavation** |  | 2026-08-09 | 2026-12-12 |  |  |  |  |  |  |  |  |  |  |  |
| SDR-2-CON-TS-ZA-3200 |  | Excavation for TSE HDPE Pipes 225 mm Section 1 | 20d | 2026-08-09 A | 2026-11-18 | SDR-2-CON-SE-ZA-1000, SDR-2-PRO-ST-M-1010, SDR-2-PRO-ST-E-1060, SDR-2-CON-RW-ZG-1390 FF, SDR-2-CON-RW-ZA-2350 FF | 65% | 1d | 2026-11-15 | 2026-12-07 | 28d | 3d | SIC- Cost [43139.2]; Plumbing Helper [81.48 h]; Labor [51.21 h]; Plumber [81.48 h]; Excavator [12.45 h]; Excavator Operator [81.48 h] | 21,569.6 |  | Z A |
| SDR-2-CON-TS-ZA-1000 |  | Excavation for TSE HDPE Pipes 225 mm Section 2 | 20d | 2026-11-19 | 2026-12-12 | SDR-2-CON-RW-ZG-2300, SDR-2-CON-TS-ZA-3200 FF, SDR-2-CON-CC-ZG-1650 FF |  |  |  |  | 17d | 0d | SIC- Cost [43139.2]; Plumbing Helper [81.48 h]; Labor [51.21 h]; Plumber [81.48 h]; Excavator [12.45 h]; Excavator Operator [81.48 h] | 21,569.6 |  | Z A |

| ID | WBS | Activity | Duration | Start | Finish | Predecessors | Complete | Remaining | Planned start | Planned finish | Total float | Free float | Resources | Cost | ZONE A |
| --- | --- | --- | --- | --- | --- | --- | --- | --- | --- | --- | --- | --- | --- | --- | --- |
|  | 6 | **bedding Works** |  | 2026-12-13 | 2027-01-05 |  |  |  |  |  |  |  |  |  |  |
| SDR-2-CON-TS-ZA-1900 |  | Sand bedding for TSE HDPE Pipes 225 mm | 21d | 2026-12-13 | 2027-01-05 | SDR-2-CON-RW-ZG-1210 FS+4d, SDR-2-CON-TS-ZA-1000 |  |  |  |  | 51d | 45d | SIC- Cost [43139.2]; Plumbing Helper [81.48 h]; Labor [51.21 h]; Plumber [67.9 h]; Excavator [6.35 h]; Excavator Operator [67.9 h] | 10,784.79 | Z A |
|  | 2 | **Pipes Laying** |  | 2027-03-01 | 2027-03-29 |  |  |  |  |  |  |  |  |  |  |
| SDR-2-CON-TS-ZA-1010 |  | Install TSE 225 mm HDPE Pipe | 21d | 2027-03-01 | 2027-03-29 | SDR-2-CON-ST-ZA-4200, SDR-2-CON-CC-ZA-1820 SS, SDR-2-CON-TS-ZA-1000, SDR-2-PRO-MAL-M-1010, SDR-2-CON-TS-ZA-1900 |  |  |  |  | 6d | 0d | SIC- Cost; Plumbing Helper [67.9 h]; Labor [96.01 h]; Plumber [67.9 h]; Excavator [263.64 h]; Excavator Operator [67.9 h] | 97,063.15 | Z A |
|  | 5 | **Testing** |  | 2027-03-30 | 2027-04-14 |  |  |  |  |  |  |  |  |  |  |
| SDR-2-CON-TS-ZA-1080 |  | Testing of TSE HDPE Pipe 225 mm. | 14d | 2027-03-30 | 2027-04-14 | SDR-2-CON-CC-ZG-1620, SDR-2-CON-TS-ZA-1010 |  |  |  |  | 6d | 0d | SIC- Cost [32354.4]; Plumbing Helper [76.43 h]; Labor [1609.51 h]; Plumber [76.43 h]; Excavator [520 h]; Excavator Operator [95.54 h] | 21,569.6 | Z A |
|  | 7 | **Backfilling** |  | 2027-04-11 | 2027-05-04 |  |  |  |  |  |  |  |  |  |  |
| SDR-2-CON-TS-ZA-1910 |  | Backfilling of TSE HDPE Pipe 225 mm. | 21d | 2027-04-11 | 2027-05-04 | SDR-2-CON-TS-ZA-1080 SS+10d |  |  |  |  | 6d |  | SIC- Cost [32354.4]; Plumbing Helper [210.18 h]; Labor [1039.75 h]; Plumber [150.23 h]; Excavator [15.37 h]; Excavator Operator [262.72 h] | 43,139.18 | Z A |
|  | 3 | **Valve Chambers & Valves** |  | 2026-11-22 | 2027-04-12 |  |  |  |  |  |  |  |  |  |  |
|  | 3 | **Excavation** |  | 2026-11-22 | 2027-01-06 |  |  |  |  |  |  |  |  |  |  |
| SDR-2-CON-TS-ZA-3210 |  | Excavation for Valve Chambers Section 1 | 20d | 2026-11-22 | 2026-12-14 | SDR-2-CON-TS-ZA-3200 SS, SDR-2-CON-RW-ZA-3490, SDR-2-CON-RW-ZA-2350 |  |  |  |  | 25d | 0d | SIC- Cost [43105.5]; Plumbing Helper [267.5 h]; Labor [44.81 h]; Plumber [267.5 h]; Excavator [14.1 h]; Excavator Operator [334.38 h] | 5,842.24 | Z A |
| SDR-2-CON-TS-ZA-1040 |  | Excavation for Valve Chambers Section 2 | 20d | 2026-12-15 | 2027-01-06 | SDR-2-CON-TS-ZA-3210 |  |  |  |  | 25d | 0d | SIC- Cost [43105.5]; Plumbing Helper [267.5 h]; Labor [44.81 h]; Plumber [267.5 h]; Excavator [14.1 h]; Excavator Operator [334.38 h] | 5,842.06 | Z A |
|  | 1 | **bedding Works** |  | 2027-01-07 | 2027-01-31 |  |  |  |  |  |  |  |  |  |  |
| SDR-2-CON-TS-ZA-1020 |  | Sand bedding for Valve Chambers | 21d | 2027-01-07 | 2027-01-31 | SDR-2-CON-RW-ZG-1060, SDR-2-PRO-MAL-M-1020, SDR-2-CON-TS-ZA-1040 |  |  |  |  | 25d | 0d | SIC- Cost [9271.88]; Plumbing Helper [143.3 h]; Labor [51.21 h]; Plumber [143.3 h]; Excavator [5.9 h]; Excavator Operator [179.13 h] | 7,789.66 | Z A |
|  | 4 | **Install Chambers & Valves** |  | 2027-02-01 | 2027-02-25 |  |  |  |  |  |  |  |  |  |  |
| SDR-2-CON-TS-ZA-1050 |  | Valve Chambers & Valves Installation | 21d | 2027-02-01 | 2027-02-25 | SDR-2-CON-TS-ZA-1040, SDR-2-CON-TS-ZA-1020 |  |  |  |  | 25d | 0d | SIC- Cost [13106.5]; Plumbing Helper [171.96 h]; Labor [5059.73 h]; Plumber [171.96 h]; Excavator [12 h]; Excavator Operator [214.96 h] | 35,053.45 | Z A |
|  | 5 | **Testing** |  | 2027-02-27 | 2027-03-18 |  |  |  |  |  |  |  |  |  |  |
| SDR-2-CON-TS-ZA-1060 |  | Testing Chambers & Valves Installation | 14d | 2027-02-27 | 2027-03-18 | SDR-2-MILS-1060, SDR-2-CON-TS-ZA-1050 |  |  |  |  | 25d | 0d | SIC- Cost [1806.63]; Plumbing Helper [76.43 h]; Labor [10279.8 h]; Plumber [76.43 h]; Excavator [12 h]; Excavator Operator [95.54 h] | 7,789.66 | Z A |
|  | 6 | **Backfilling** |  | 2027-03-20 | 2027-04-12 |  |  |  |  |  |  |  |  |  |  |
| SDR-2-CON-TS-ZA-1070 |  | Backfilling Chambers & Valves Installation | 21d | 2027-03-20 | 2027-04-12 | SDR-2-CON-TS-ZA-1060 |  |  |  |  | 25d |  | SIC- Cost [1334.15]; Plumbing Helper [191.07 h]; Labor [44.81 h]; Plumber [191.07 h]; Excavator [12 h]; Excavator Operator [158.22 h] | 15,579.31 | Z A |
|  | 2 | **TSE NETWORK IN ( PH2-COL-MC20 )** |  | 2026-10-01 | 2027-05-05 |  |  |  |  |  |  |  |  |  |  |
|  | 6 | **Pipes Work** |  | 2026-10-01 | 2027-05-01 |  |  |  |  |  |  |  |  |  |  |
|  | 1 | **Excavation** |  | 2026-10-01 | 2027-02-02 |  |  |  |  |  |  |  |  |  |  |
| SDR-2-CON-TS-ZA-3220 |  | Excavation for TSE HDPE Pipes 225 mm Section 1 | 20d | 2026-10-01 A | 2027-01-10 | SDR-2-CON-SE-ZA-1460, SDR-2-CON-CC-ZG-1610, SDR-2-CON-RW-ZA-3490 | 25% | 20d | 2026-11-22 | 2026-12-14 | 9d | 0d | SIC- Cost [43139.2]; Plumbing Helper [81.48 h]; Labor [51.21 h]; Plumber [81.48 h]; Excavator [12 h]; Excavator Operator [81.48 h] | 21,569.6 | Z A |
| SDR-2-CON-TS-ZA-2200 |  | Excavation for TSE HDPE Pipes 225 mm Section 2 | 20d | 2027-01-11 | 2027-02-02 | SDR-2-CON-TS-ZA-3220 |  |  |  |  | 9d | 0d | SIC- Cost [43139.2]; Plumbing Helper [81.48 h]; Labor [51.21 h]; Plumber [81.48 h]; Excavator [5 h]; Excavator Operator [81.48 h] | 21,569.6 | Z A |

| ID | WBS | Activity | Duration | Start | Finish | Predecessors | Complete | Remaining | Planned start | Planned finish | Total float | Free float | Resources | Cost | ZONE A |
| --- | --- | --- | --- | --- | --- | --- | --- | --- | --- | --- | --- | --- | --- | --- | --- |
|  | 6 | **bedding Works** |  | 2027-02-03 | 2027-02-28 |  |  |  |  |  |  |  |  |  |  |
| SDR-2-CON-TS-ZA-2280 |  | Sand bedding for TSE HDPE Pipes 225 mm | 21d | 2027-02-03 | 2027-02-28 | SDR-2-CON-RW-ZA-2370, SDR-2-CON-TS-ZA-2200 |  |  |  |  | 9d | 0d | SIC- Cost [43139.2]; Plumbing Helper [67.9 h]; Labor [51.21 h]; Plumber [67.9 h]; Excavator [14.6 h]; Excavator Operator [67.9 h] | 10,784.79 | Z A |
|  | 2 | **Pipes Laying** |  | 2026-10-03 | 2027-03-29 |  |  |  |  |  |  |  |  |  |  |
| SDR-2-CON-TS-ZA-2210 |  | Install TSE 225 mm HDPE Pipe | 21d | 2026-10-03 A | 2027-03-29 | SDR-2-CON-TS-ZA-2200, SDR-2-CON-TS-ZA-2280 | 15% | 21d | 2027-02-01 | 2027-02-25 | 9d | 0d | SIC- Cost; Plumbing Helper [81.48 h]; Labor [96.01 h]; Plumber [81.48 h]; Excavator [12 h]; Excavator Operator [81.48 h] | 97,063.15 | Z A |
|  | 5 | **Testing** |  | 2027-03-30 | 2027-04-10 |  |  |  |  |  |  |  |  |  |  |
| SDR-2-CON-TS-ZA-2270 |  | Testing of TSE HDPE Pipe 225 mm. | 10d | 2027-03-30 | 2027-04-10 | SDR-2-CON-TS-ZA-2210 |  |  |  |  | 9d | 0d | SIC- Cost [32354.4]; Plumbing Helper [76.43 h]; Labor [32 h]; Plumber [76.43 h]; Excavator [12 h]; Excavator Operator [95.54 h] | 21,569.6 | Z A |
|  | 7 | **Backfilling** |  | 2027-04-11 | 2027-05-01 |  |  |  |  |  |  |  |  |  |  |
| SDR-2-CON-TS-ZA-2290 |  | Backfilling of TSE HDPE Pipe 225 mm. | 18d | 2027-04-11 | 2027-05-01 | SDR-2-CON-TS-ZA-2270 |  |  |  |  | 9d |  | SIC- Cost [32354.4]; Plumbing Helper [59.24 h]; Labor [32 h]; Plumber [59.24 h]; Excavator [12 h]; Excavator Operator [63.79 h] | 43,139.18 | Z A |
|  | 3 | **Valve Chambers & Valves** |  | 2026-12-19 | 2027-05-05 |  |  |  |  |  |  |  |  |  |  |
|  | 3 | **Excavation** |  | 2026-12-19 | 2027-02-02 |  |  |  |  |  |  |  |  |  |  |
| SDR-2-CON-TS-ZA-3230 |  | Excavation for Valve Chambers Section 1 | 20d | 2026-12-19 | 2027-01-10 | SDR-2-CON-TS-ZA-3220 SS, SDR-2-CON-RW-ZA-3490 |  |  |  |  | 9d | 0d | SIC- Cost [43105.5]; Plumbing Helper [124.2 h]; Labor [44.81 h]; Plumber [124.2 h]; Excavator [12 h]; Excavator Operator [155.25 h] | 5,842.24 | Z A |
| SDR-2-CON-TS-ZA-2230 |  | Excavation for Valve Chambers Section 2 | 20d | 2027-01-11 | 2027-02-02 | SDR-2-CON-TS-ZA-3230 |  |  |  |  | 9d | 4d | SIC- Cost [43105.5]; Plumbing Helper [124.2 h]; Labor [44.81 h]; Plumber [124.2 h]; Excavator [5 h]; Excavator Operator [155.25 h] | 5,842.24 | Z A |
|  | 1 | **bedding Works** |  | 2027-02-08 | 2027-03-04 |  |  |  |  |  |  |  |  |  |  |
| SDR-2-CON-TS-ZA-2220 |  | Sand bedding for Valve Chambers | 21d | 2027-02-08 | 2027-03-04 | SDR-2-CON-ST-ZA-6000, SDR-2-CON-ST-ZA-5850, SDR-2-CON-TS-ZA-2230 |  |  |  |  | 5d | 0d | SIC- Cost [9271.88]; Plumbing Helper [133.75 h]; Labor [51.21 h]; Plumber [133.75 h]; Excavator [12 h]; Excavator Operator [167.19 h] | 7,789.66 | Z A |
|  | 4 | **Install Chambers & Valves** |  | 2027-03-06 | 2027-04-03 |  |  |  |  |  |  |  |  |  |  |
| SDR-2-CON-TS-ZA-2240 |  | Valve Chambers & Valves Installation | 21d | 2027-03-06 | 2027-04-03 | SDR-2-CON-TS-ZA-2230, SDR-2-CON-TS-ZA-2220 |  |  |  |  | 5d | 0d | SIC- Cost [13106.5]; Plumbing Helper [152.86 h]; Labor [44.81 h]; Plumber [152.86 h]; Excavator [12 h]; Excavator Operator [191.07 h] | 35,053.45 | Z A |
|  | 5 | **Testing** |  | 2027-04-04 | 2027-04-14 |  |  |  |  |  |  |  |  |  |  |
| SDR-2-CON-TS-ZA-2250 |  | Testing Chambers & Valves Installation | 10d | 2027-04-04 | 2027-04-14 | SDR-2-CON-TS-ZA-2240 |  |  |  |  | 5d | 0d | SIC- Cost [1806.63]; Plumbing Helper [76.43 h]; Labor [44.81 h]; Plumber [76.43 h]; Excavator [12 h]; Excavator Operator [95.54 h] | 7,789.66 | Z A |
|  | 6 | **Backfilling** |  | 2027-04-15 | 2027-05-05 |  |  |  |  |  |  |  |  |  |  |
| SDR-2-CON-TS-ZA-2260 |  | Backfilling Chambers & Valves Installation | 18d | 2027-04-15 | 2027-05-05 | SDR-2-CON-TS-ZA-2250 |  |  |  |  | 5d |  | SIC- Cost [1334.15]; Plumbing Helper [50.75 h]; Labor [44.81 h]; Plumber [50.75 h]; Excavator [8 h]; Excavator Operator [67.52 h] | 15,579.31 | Z A |
|  | 3 | **TSE NETWORK IN ( PH2-A-MCC0 )** |  | 2026-09-24 | 2027-05-03 |  |  |  |  |  |  |  |  |  |  |
|  | 6 | **Pipes Work** |  | 2026-09-24 | 2027-02-04 |  |  |  |  |  |  |  |  |  |  |
|  | 1 | **Excavation** |  | 2026-09-24 | 2026-11-01 |  |  |  |  |  |  |  |  |  |  |
| SDR-2-CON-TS-ZA-1180 |  | Excavation for TSE HDPE Pipes 125 mm Section 1 | 21d | 2026-09-24 A | 2026-10-01 A | SDR-2-CON-TS-ZA-3240 FS+3d, SDR-2-CON-RW-ZG-1060 | 100% |  | 2026-11-16 | 2026-12-09 |  |  | SIC- Cost [31428.1]; Plumbing Helper [81.48 h]; Labor [51.21 h]; Plumber [81.48 h]; Excavator [5 h]; Excavator Operator [81.48 h] | 15,714.04 | Z A |
| SDR-2-CON-TS-ZA-3240 |  | Excavation for TSE HDPE Pipes 125 mm Section 2 | 21d | 2026-10-04 A | 2026-11-01 | SDR-2-CON-SE-ZA-1460 FS+1d | 50% | 0d | 2026-09-28 | 2026-10-21 | 50.3d | 0d | SIC- Cost [31428.1]; Plumbing Helper [81.48 h]; Labor [51.21 h]; Plumber [81.48 h]; Excavator [14.27 h]; Excavator Operator [81.48 h] | 15,714.04 | Z A |

| ID | WBS | Activity | Duration | Start | Finish | Predecessors | Complete | Remaining | Planned start | Planned finish | Total float | Free float | Resources | Cost | ZONE A |
| --- | --- | --- | --- | --- | --- | --- | --- | --- | --- | --- | --- | --- | --- | --- | --- |
|  | 3 | **bedding Works** |  | 2026-10-22 | 2026-12-15 |  |  |  |  |  |  |  |  |  |  |
| SDR-2-CON-TS-ZA-1920 |  | Sand bedding for TSE HDPE Pipes 125 mm | 21d | 2026-10-22 A | 2026-12-15 | SDR-2-CON-TS-ZA-1180 | 25% | 21d | 2026-11-16 | 2026-12-09 | 77d | 0d | SIC- Cost [31428.1]; Plumbing Helper [81.48 h]; Labor [51.21 h]; Plumber [81.48 h]; Excavator [6 h]; Excavator Operator [81.48 h] | 7,857.01 | Z A |
|  | 2 | **Pipes Laying** |  | 2026-10-22 | 2027-01-09 |  |  |  |  |  |  |  |  |  |  |
| SDR-2-CON-TS-ZA-1190 |  | Install TSE 125 mm HDPE Pipe | 21d | 2026-10-22 A | 2027-01-09 | SDR-2-CON-TS-ZA-1180, SDR-2-CON-TS-ZA-1920 | 25% | 21d | 2026-12-10 | 2027-01-03 | 77d | 0d | SIC- Cost; Plumbing Helper [81.48 h]; Labor [96.01 h]; Plumber [81.48 h]; Excavator [11.45 h]; Excavator Operator [81.48 h] | 70,713.15 | Z A |
|  | 5 | **Testing** |  | 2027-01-10 | 2027-01-20 |  |  |  |  |  |  |  |  |  |  |
| SDR-2-CON-TS-ZA-1260 |  | Testing of TSE HDPE Pipe 125 mm. | 10d | 2027-01-10 | 2027-01-20 | SDR-2-CON-TS-ZA-1190 |  |  |  |  | 77d | 0d | SIC- Cost [23571]; Plumbing Helper [76.43 h]; Labor [25.6 h]; Plumber [76.43 h]; Excavator [9.8 h]; Excavator Operator [95.54 h] | 15,714.03 | Z A |
|  | 4 | **Backfilling** |  | 2027-01-21 | 2027-02-04 |  |  |  |  |  |  |  |  |  |  |
| SDR-2-CON-TS-ZA-1930 |  | Backfilling of TSE HDPE Pipe 125 mm. | 13d | 2027-01-21 | 2027-02-04 | SDR-2-CON-TS-ZA-1260 |  |  |  |  | 77d |  | SIC- Cost [23571]; Plumbing Helper [40.13 h]; Labor [25.6 h]; Plumber [40.13 h]; Excavator [8 h]; Excavator Operator [67.52 h] | 31,428.07 | Z A |
|  | 3 | **Valve Chambers & Valves** |  | 2026-11-01 | 2027-05-03 |  |  |  |  |  |  |  |  |  |  |
|  | 3 | **Excavation** |  | 2026-11-01 | 2026-12-15 |  |  |  |  |  |  |  |  |  |  |
| SDR-2-CON-TS-ZA-3250 |  | Excavation for Valve Chambers Section 1 | 21d | 2026-11-01 | 2026-11-24 | SDR-2-CON-TS-ZA-3240 SS |  |  |  |  | 50.3d | 0d | SIC- Cost [43105.5]; Plumbing Helper [210.18 h]; Labor [44.81 h]; Plumber [210.18 h]; Excavator [12 h]; Excavator Operator [262.72 h] | 5,842.24 | Z A |
| SDR-2-CON-TS-ZA-2010 |  | Excavation for Valve Chambers Section 2 | 18d | 2026-11-25 | 2026-12-15 | SDR-2-CON-TS-ZA-3250 |  |  |  |  | 50.3d | 0d | SIC- Cost [43105.5]; Plumbing Helper [210.18 h]; Labor [44.81 h]; Plumber [210.18 h]; Excavator [5 h]; Excavator Operator [262.72 h] | 5,842.24 | Z A |
|  | 1 | **bedding Works** |  | 2026-12-16 | 2027-01-09 |  |  |  |  |  |  |  |  |  |  |
| SDR-2-CON-TS-ZA-2000 |  | Sand bedding for Valve Chambers | 21d | 2026-12-16 | 2027-01-09 | SDR-2-CON-TS-ZA-2010 |  |  |  |  | 50.3d | 43d | SIC- Cost [9271.88]; Plumbing Helper [105.09 h]; Labor [51.21 h]; Plumber [105.09 h]; Excavator [12 h]; Excavator Operator [131.36 h] | 7,789.66 | Z A |
|  | 4 | **Install Chambers & Valves** |  | 2027-03-02 | 2027-03-30 |  |  |  |  |  |  |  |  |  |  |
| SDR-2-CON-TS-ZA-2020 |  | Valve Chambers & Valves Installation | 21d | 2027-03-02 | 2027-03-30 | SDR-2-TC-CCTV-1080, SDR-2-CON-TS-ZA-2010, SDR-2-CON-TS-ZA-2000 |  |  |  |  | 7.3d | 0d | SIC- Cost [13106.5]; Plumbing Helper [124.2 h]; Labor [44.81 h]; Plumber [124.2 h]; Excavator [17.6 h]; Excavator Operator [155.25 h] | 35,053.45 | Z A |
|  | 5 | **Testing** |  | 2027-03-31 | 2027-04-07 |  |  |  |  |  |  |  |  |  |  |
| SDR-2-CON-TS-ZA-2030 |  | Testing Chambers & Valves Installation | 7d | 2027-03-31 | 2027-04-07 | SDR-2-CON-TS-ZA-2020 |  |  |  |  | 7.3d | 0d | SIC- Cost [1806.63]; Plumbing Helper [66.88 h]; Labor [44.81 h]; Plumber [66.88 h]; Excavator [6 h]; Excavator Operator [83.59 h] | 7,789.66 | Z A |
|  | 6 | **Backfilling** |  | 2027-04-08 | 2027-05-03 |  |  |  |  |  |  |  |  |  |  |
| SDR-2-CON-TS-ZA-2040 |  | Backfilling Chambers & Valves Installation | 21d | 2027-04-08 | 2027-05-03 | SDR-2-CON-TS-ZA-2030 FS+0.7d |  |  |  |  | 7.3d |  | SIC- Cost [1334.15]; Plumbing Helper [73.39 h]; Labor [44.81 h]; Plumber [73.39 h]; Excavator [8.04 h]; Excavator Operator [61.93 h] | 15,579.31 | Z A |
|  | 4 | **TSE NETWORK IN ( PH2-A-MCD0 )** |  | 2026-09-07 | 2027-05-08 |  |  |  |  |  |  |  |  |  |  |
|  | 6 | **Pipes Work** |  | 2026-09-07 | 2027-05-06 |  |  |  |  |  |  |  |  |  |  |
|  | 1 | **Excavation** |  | 2026-09-07 | 2026-11-01 |  |  |  |  |  |  |  |  |  |  |
| SDR-2-CON-TS-ZA-1270 |  | Excavation for TSE HDPE Pipes 90 mm Section 1 | 19d | 2026-09-07 A | 2026-10-01 A | SDR-2-CON-TS-ZA-3260 | 100% |  | 2026-09-28 | 2026-10-19 |  |  | SIC- Cost; Plumbing Helper [81.48 h]; Labor [51.21 h]; Plumber [81.48 h]; Excavator [5 h]; Excavator Operator [81.48 h] | 3,488.37 | Z A |
| SDR-2-CON-TS-ZA-3260 |  | Excavation for TSE HDPE Pipes 90 mm Section 2 | 20d | 2026-10-04 A | 2026-11-01 | SDR-2-CON-SE-ZA-1560 | 50% | 0d | 2026-12-02 | 2026-12-24 | 62d | 0d | SIC- Cost; Plumbing Helper [81.48 h]; Labor [51.21 h]; Plumber [81.48 h]; Excavator [16.05 h]; Excavator Operator [81.48 h] | 3,488.37 | Z A |

| ID | WBS | Activity | Duration | Start | Finish | Predecessors | Complete | Remaining | Planned start | Planned finish | Total float | Free float | Resources | Cost | ZONE A |
| --- | --- | --- | --- | --- | --- | --- | --- | --- | --- | --- | --- | --- | --- | --- | --- |
|  | 3 | **bedding Works** |  | 2026-10-22 | 2026-11-21 |  |  |  |  |  |  |  |  |  |  |
| SDR-2-CON-TS-ZA-1940 |  | Sand bedding for TSE HDPE Pipes 90 mm | 18d | 2026-10-22 A | 2026-11-21 | SDR-2-CON-TS-ZA-1270 | 30% | 18d | 2026-10-20 | 2026-11-09 | 89d | 85d | SIC- Cost; Plumbing Helper [81.48 h]; Labor [51.21 h]; Plumber [81.48 h]; Excavator [6 h]; Excavator Operator [81.48 h] | 1,744.18 | Z A |
|  | 2 | **Pipes Laying** |  | 2026-10-22 | 2027-03-30 |  |  |  |  |  |  |  |  |  |  |
| SDR-2-CON-TS-ZA-1280 |  | Install TSE 90 mm HDPE Pipe | 21d | 2026-10-22 A | 2027-03-30 | SDR-2-TC-CCTV-1080, SDR-2-CON-TS-ZA-1940 | 30% | 21d | 2027-02-02 | 2027-02-27 | 4d | 0d | SIC- Cost; Plumbing Helper [81.48 h]; Labor [96.01 h]; Plumber [81.48 h]; Excavator [12 h]; Excavator Operator [81.48 h] | 15,697.64 | Z A |
|  | 5 | **Testing** |  | 2027-03-31 | 2027-04-12 |  |  |  |  |  |  |  |  |  |  |
| SDR-2-CON-TS-ZA-1350 |  | Testing of TSE HDPE Pipe 90 mm. | 11d | 2027-03-31 | 2027-04-12 | SDR-2-CON-SE-ZA-2430, SDR-2-CON-SE-ZA-2340, SDR-2-CON-SE-ZA-2330, SDR-2-CON-SE-ZA-2240 SS, SDR-2-CON-TS-ZA-1280 |  |  |  |  | 4d | 0d | SIC- Cost [5232.55]; Plumbing Helper [76.43 h]; Labor [19.2 h]; Plumber [76.43 h]; Excavator [6 h]; Excavator Operator [95.54 h] | 3,488.37 | Z A |
|  | 4 | **Backfilling** |  | 2027-04-13 | 2027-05-06 |  |  |  |  |  |  |  |  |  |  |
| SDR-2-CON-TS-ZA-1950 |  | Backfilling of TSE HDPE Pipe 90 mm. | 21d | 2027-04-13 | 2027-05-06 | SDR-2-CON-TS-ZA-1350 |  |  |  |  | 4d |  | SIC- Cost [5232.55]; Plumbing Helper [85.63 h]; Labor [1026.96 h]; Plumber [191.07 h]; Excavator [12.57 h]; Excavator Operator [77.6 h] | 6,976.73 | Z A |
|  | 3 | **Valve Chambers & Valves** |  | 2026-11-01 | 2027-05-08 |  |  |  |  |  |  |  |  |  |  |
|  | 3 | **Excavation** |  | 2026-11-01 | 2026-12-15 |  |  |  |  |  |  |  |  |  |  |
| SDR-2-CON-TS-ZA-3270 |  | Excavation for Valve Chambers Section 1 | 20d | 2026-11-01 | 2026-11-23 | SDR-2-CON-TS-ZA-3260 SS |  |  |  |  | 62d | 0d | SIC- Cost [43105.5]; Plumbing Helper [229.29 h]; Labor [44.81 h]; Plumber [229.29 h]; Excavator [18 h]; Excavator Operator [286.61 h] | 5,842.24 | Z A |
| SDR-2-CON-TS-ZA-2060 |  | Excavation for Valve Chambers Section 2 | 19d | 2026-11-24 | 2026-12-15 | SDR-2-CON-TS-ZA-3270 |  |  |  |  | 62d | 0d | SIC- Cost [43105.5]; Plumbing Helper [229.29 h]; Labor [44.81 h]; Plumber [229.29 h]; Excavator [5 h]; Excavator Operator [286.61 h] | 5,842.24 | Z A |
|  | 1 | **bedding Works** |  | 2026-12-16 | 2027-01-03 |  |  |  |  |  |  |  |  |  |  |
| SDR-2-CON-TS-ZA-2050 |  | Sand bedding for Valve Chambers | 16d | 2026-12-16 | 2027-01-03 | SDR-2-CON-TS-ZA-2060 |  |  |  |  | 62d | 48d | SIC- Cost [9271.88]; Plumbing Helper [105.09 h]; Labor [51.21 h]; Plumber [105.09 h]; Excavator [6 h]; Excavator Operator [131.36 h] | 7,789.66 | Z A |
|  | 4 | **Install Chambers & Valves** |  | 2027-03-02 | 2027-03-30 |  |  |  |  |  |  |  |  |  |  |
| SDR-2-CON-TS-ZA-2070 |  | Valve Chambers & Valves Installation | 21d | 2027-03-02 | 2027-03-30 | SDR-2-TC-CCTV-1080, SDR-2-CON-TS-ZA-2060, SDR-2-CON-TS-ZA-2050 |  |  |  |  | 14d | 0d | SIC- Cost [13106.5]; Plumbing Helper [143.3 h]; Labor [44.81 h]; Plumber [143.3 h]; Excavator [12 h]; Excavator Operator [179.13 h] | 35,053.45 | Z A |
|  | 5 | **Testing** |  | 2027-03-31 | 2027-04-15 |  |  |  |  |  |  |  |  |  |  |
| SDR-2-CON-TS-ZA-2080 |  | Testing Chambers & Valves Installation | 14d | 2027-03-31 | 2027-04-15 | SDR-2-CON-SE-ZA-2340, SDR-2-CON-SE-ZA-2330, SDR-2-CON-SE-ZA-2240 SS, SDR-2-CON-TS-ZA-2070 |  |  |  |  | 14d | 0d | SIC- Cost [1806.63]; Plumbing Helper [76.43 h]; Labor [44.81 h]; Plumber [76.43 h]; Excavator [12 h]; Excavator Operator [95.54 h] | 7,789.66 | Z A |
|  | 6 | **Backfilling** |  | 2027-04-17 | 2027-05-08 |  |  |  |  |  |  |  |  |  |  |
| SDR-2-CON-TS-ZA-2090 |  | Backfilling Chambers & Valves Installation | 19d | 2027-04-17 | 2027-05-08 | SDR-2-CON-TS-ZA-2080 |  |  |  |  | 14d | 13d | SIC- Cost [1334.15]; Plumbing Helper [65.78 h]; Labor [44.81 h]; Plumber [65.78 h]; Excavator [8 h]; Excavator Operator [61.93 h] | 15,579.31 | Z A |
|  | 5 | **TSE NETWORK IN ( PH2-A-MCE0 )** |  | 2026-09-07 | 2027-05-22 |  |  |  |  |  |  |  |  |  |  |
|  | 6 | **Pipes Work** |  | 2026-09-07 | 2027-05-22 |  |  |  |  |  |  |  |  |  |  |
|  | 1 | **Excavation** |  | 2026-09-07 | 2026-10-08 |  |  |  |  |  |  |  |  |  |  |
| SDR-2-CON-TS-ZA-3280 |  | Excavation for TSE HDPE Pipes 90 mm Section 1 | 20d | 2026-09-07 A | 2026-09-14 A | SDR-2-CON-SE-ZA-1660 | 100% |  | 2026-12-13 | 2027-01-04 |  |  | SIC- Cost; Plumbing Helper [67.9 h]; Labor [51.21 h]; Plumber [67.9 h]; Excavator [12 h]; Excavator Operator [67.9 h] | 3,488.37 | Z A |
| SDR-2-CON-TS-ZA-2600 |  | Excavation for TSE HDPE Pipes 90 mm Section 2 | 20d | 2026-10-05 A | 2026-10-08 A | SDR-2-CON-TS-ZA-3280, SDR-2-CON-TE-ZA-1840, SDR-2-CON-MV-ZA-1260 | 100% |  | 2027-02-09 | 2027-03-04 |  |  | SIC- Cost; Plumbing Helper [67.9 h]; Labor [51.21 h]; Plumber [67.9 h]; Excavator [5 h]; Excavator Operator [67.9 h] | 3,488.37 | Z A |

| ID | WBS | Activity | Duration | Start | Finish | Predecessors | Complete | Remaining | Planned start | Planned finish | Total float | Free float | Resources | Cost | ZONE A |
| --- | --- | --- | --- | --- | --- | --- | --- | --- | --- | --- | --- | --- | --- | --- | --- |
|  | 3 | **bedding Works** |  | 2026-09-30 | 2027-03-28 |  |  |  |  |  |  |  |  |  |  |
| SDR-2-CON-TS-ZA-2630 |  | Sand bedding for TSE HDPE Pipes 90 mm | 19d | 2026-09-30 A | 2027-03-28 | SDR-2-CON-TS-ZA-2600 | 50% | 19d | 2027-02-27 | 2027-03-24 | 25d | 0d | SIC- Cost; Plumbing Helper [67.9 h]; Labor [51.21 h]; Plumber [67.9 h]; Excavator [15.17 h]; Excavator Operator [67.9 h] | 1,744.18 | Z A |
|  | 2 | **Pipes Laying** |  | 2026-09-30 | 2027-04-18 |  |  |  |  |  |  |  |  |  |  |
| SDR-2-CON-TS-ZA-2610 |  | Install TSE 90 mm HDPE Pipe | 18d | 2026-09-30 A | 2027-04-18 | SDR-2-CON-TS-ZA-2630 | 50% | 18d | 2027-03-25 | 2027-04-14 | 25d | 0d | SIC- Cost [22674.4]; Plumbing Helper [191.07 h]; Labor [96.01 h]; Plumber [191.07 h]; Excavator [16 h]; Excavator Operator [67.91 h] | 15,697.64 | Z A |
|  | 5 | **Testing** |  | 2027-04-19 | 2027-04-29 |  |  |  |  |  |  |  |  |  |  |
| SDR-2-CON-TS-ZA-2620 |  | Testing of TSE HDPE Pipe 90 mm. | 10d | 2027-04-19 | 2027-04-29 | SDR-2-CON-TS-ZA-2610 |  |  |  |  | 25d | 0d | SIC- Cost [5232.55]; Plumbing Helper [57.32 h]; Labor [19.2 h]; Plumber [57.32 h]; Excavator [12 h]; Excavator Operator [71.65 h] | 3,488.37 | Z A |
|  | 4 | **Backfilling** |  | 2027-04-24 | 2027-05-22 |  |  |  |  |  |  |  |  |  |  |
| SDR-2-CON-TS-ZA-2640 |  | Backfilling of TSE HDPE Pipe 90 mm. | 20d | 2027-04-24 | 2027-05-22 | SDR-2-CON-TS-ZA-2620 SS+4d |  |  |  |  | 25d | 24d | SIC- Cost [5232.55]; Plumbing Helper [63.06 h]; Labor [19.2 h]; Plumber [63.06 h]; Excavator [8 h]; Excavator Operator [70.14 h] | 6,976.73 | Z A |
|  | 3 | **Valve Chambers & Valves** |  | 2026-11-01 | 2027-03-07 |  |  |  |  |  |  |  |  |  |  |
|  | 3 | **Excavation** |  | 2026-11-01 | 2026-12-16 |  |  |  |  |  |  |  |  |  |  |
| SDR-2-CON-TS-ZA-3290 |  | Excavation for Valve Chambers Section 1 | 21d | 2026-11-01 | 2026-11-24 | SDR-2-CON-TS-ZA-3280 SS |  |  |  |  | 52d | 0d | SIC- Cost [43105.5]; Plumbing Helper [171.96 h]; Labor [44.81 h]; Plumber [171.96 h]; Excavator [12 h]; Excavator Operator [214.96 h] | 5,842.24 | Z A |
| SDR-2-CON-TS-ZA-2660 |  | Excavation for Valve Chambers Section 2 | 19d | 2026-11-25 | 2026-12-16 | SDR-2-CON-TS-ZA-3290 |  |  |  |  | 52d | 0d | SIC- Cost [43105.5]; Plumbing Helper [171.96 h]; Labor [44.81 h]; Plumber [171.96 h]; Excavator [5 h]; Excavator Operator [214.96 h] | 5,842.24 | Z A |
|  | 1 | **bedding Works** |  | 2026-12-17 | 2027-01-09 |  |  |  |  |  |  |  |  |  |  |
| SDR-2-CON-TS-ZA-2650 |  | Sand bedding for Valve Chambers | 20d | 2026-12-17 | 2027-01-09 | SDR-2-CON-TS-ZA-2660 |  |  |  |  | 52d | 0d | SIC- Cost [9271.88]; Plumbing Helper [76.43 h]; Labor [51.21 h]; Plumber [76.43 h]; Excavator [12 h]; Excavator Operator [95.54 h] | 7,789.66 | Z A |
|  | 4 | **Install Chambers & Valves** |  | 2027-01-10 | 2027-02-02 |  |  |  |  |  |  |  |  |  |  |
| SDR-2-CON-TS-ZA-2670 |  | Valve Chambers & Valves Installation | 21d | 2027-01-10 | 2027-02-02 | SDR-2-CON-TS-ZA-2660, SDR-2-CON-TS-ZA-2650 |  |  |  |  | 52d | 0d | SIC- Cost [13106.5]; Plumbing Helper [114.64 h]; Labor [44.81 h]; Plumber [114.64 h]; Excavator [12 h]; Excavator Operator [143.3 h] | 35,053.45 | Z A |
|  | 5 | **Testing** |  | 2027-02-03 | 2027-02-10 |  |  |  |  |  |  |  |  |  |  |
| SDR-2-CON-TS-ZA-2680 |  | Testing Chambers & Valves Installation | 7d | 2027-02-03 | 2027-02-10 | SDR-2-CON-SE-ZA-2240 SS, SDR-2-CON-SE-ZA-2230 SS, SDR-2-CON-SE-ZA-2140 SS, SDR-2-CON-SE-ZA-2130, SDR-2-CON-TS-ZA-2670 |  |  |  |  | 52d | 0d | SIC- Cost [1806.63]; Plumbing Helper [76.43 h]; Labor [44.81 h]; Plumber [76.43 h]; Excavator [12 h]; Excavator Operator [95.54 h] | 7,789.66 | Z A |
|  | 6 | **Backfilling** |  | 2027-02-11 | 2027-03-07 |  |  |  |  |  |  |  |  |  |  |
| SDR-2-CON-TS-ZA-2690 |  | Backfilling Chambers & Valves Installation | 20d | 2027-02-11 | 2027-03-07 | SDR-2-CON-TS-ZA-2680 |  |  |  |  | 52d |  | SIC- Cost [1334.15]; Plumbing Helper [46.82 h]; Labor [44.81 h]; Plumber [46.82 h]; Excavator [12 h]; Excavator Operator [76.49 h] | 15,579.31 | Z A |
|  | 6 | **TSE NETWORK IN ( PH2-A-MCF0 )** |  | 2026-10-05 | 2027-04-20 |  |  |  |  |  |  |  |  |  |  |
|  | 6 | **Pipes Work** |  | 2026-10-05 | 2027-02-14 |  |  |  |  |  |  |  |  |  |  |
|  | 1 | **Excavation** |  | 2026-10-05 | 2026-11-23 |  |  |  |  |  |  |  |  |  |  |
| SDR-2-CON-TS-ZA-3300 |  | Excavation for TSE HDPE Pipes 90 mm Section 1 | 20d | 2026-10-05 A | 2026-10-08 A | SDR-2-CON-SE-ZA-1760 | 100% |  | 2026-10-12 | 2026-11-03 |  |  | SIC- Cost; Plumbing Helper [81.48 h]; Labor [51.21 h]; Plumber [81.48 h]; Excavator [12 h]; Excavator Operator [81.48 h] | 3,488.37 | Z A |
| SDR-2-CON-TS-ZA-2700 |  | Excavation for TSE HDPE Pipes 90 mm Section 2 | 20d | 2026-10-07 A | 2026-11-23 | SDR-2-CON-TS-ZA-3300 | 50% | 20d | 2026-10-12 | 2026-11-03 | 69d | 0d | SIC- Cost; Plumbing Helper [81.48 h]; Labor [51.21 h]; Plumber [81.48 h]; Excavator [5.26 h]; Excavator Operator [81.48 h] | 3,488.37 | Z A |

| ID | WBS | Activity | Duration | Start | Finish | Predecessors | Complete | Remaining | Planned start | Planned finish | Total float | Free float | Resources | Cost | ZONE A |
| --- | --- | --- | --- | --- | --- | --- | --- | --- | --- | --- | --- | --- | --- | --- | --- |
|  | 3 | **bedding Works** |  | 2026-10-10 | 2026-12-16 |  |  |  |  |  |  |  |  |  |  |
| SDR-2-CON-TS-ZA-2730 |  | Sand bedding for TSE HDPE Pipes 90 mm | 20d | 2026-10-10 A | 2026-12-16 | SDR-2-CON-TS-ZA-2700 | 50% | 20d | 2026-11-04 | 2026-11-26 | 69d | 0d | SIC- Cost [6976.73]; Plumbing Helper [67.9 h]; Labor [51.21 h]; Plumber [67.9 h]; Excavator [9.82 h]; Excavator Operator [67.9 h] | 1,744.18 | Z A |
|  | 2 | **Pipes Laying** |  | 2026-10-11 | 2027-01-07 |  |  |  |  |  |  |  |  |  |  |
| SDR-2-CON-TS-ZA-2710 |  | Install TSE 90 mm HDPE Pipe | 19d | 2026-10-11 A | 2027-01-07 | SDR-2-CON-TS-ZA-2730 | 50% | 19d | 2026-11-28 | 2026-12-19 | 69d | 0d | SIC- Cost [22674.4]; Plumbing Helper [171.96 h]; Labor [96.01 h]; Plumber [171.96 h]; Excavator [12 h]; Excavator Operator [214.96 h] | 15,697.64 | Z A |
|  | 5 | **Testing** |  | 2027-01-09 | 2027-01-20 |  |  |  |  |  |  |  |  |  |  |
| SDR-2-CON-TS-ZA-2720 |  | Testing of TSE HDPE Pipe 90 mm. | 11d | 2027-01-09 | 2027-01-20 | SDR-2-CON-TS-ZA-2710 |  |  |  |  | 69d | 0d | SIC- Cost [5232.55]; Plumbing Helper [76.43 h]; Labor [19.2 h]; Plumber [76.43 h]; Excavator [6 h]; Excavator Operator [95.54 h] | 3,488.37 | Z A |
|  | 4 | **Backfilling** |  | 2027-01-21 | 2027-02-14 |  |  |  |  |  |  |  |  |  |  |
| SDR-2-CON-TS-ZA-2740 |  | Backfilling of TSE HDPE Pipe 90 mm. | 21d | 2027-01-21 | 2027-02-14 | SDR-2-CON-TS-ZA-2720 |  |  |  |  | 69d |  | SIC- Cost [5232.55]; Plumbing Helper [78.8 h]; Labor [19.2 h]; Plumber [78.8 h]; Excavator [8.94 h]; Excavator Operator [72.01 h] | 6,976.73 | Z A |
|  | 3 | **Valve Chambers & Valves** |  | 2026-11-01 | 2027-04-20 |  |  |  |  |  |  |  |  |  |  |
|  | 3 | **Excavation** |  | 2026-11-01 | 2027-01-21 |  |  |  |  |  |  |  |  |  |  |
| SDR-2-CON-TS-ZA-3310 |  | Excavation for Valve Chambers Section 1 | 20d | 2026-11-01 | 2026-11-23 | SDR-2-CON-TS-ZA-3300 SS |  |  |  |  | 70d | 31d | SIC- Cost [43105.5]; Plumbing Helper [191.07 h]; Labor [44.81 h]; Plumber [191.07 h]; Excavator [12 h]; Excavator Operator [238.84 h] | 5,842.24 | Z A |
| SDR-2-CON-TS-ZA-2760 |  | Excavation for Valve Chambers Section 2 | 20d | 2026-12-30 | 2027-01-21 | SDR-2-CON-TS-ZA-3310, SDR-2-CON-MV-ZA-1260, SDR-2-CON-MV-ZA-1220 |  |  |  |  | 39d | 0d | SIC- Cost [43105.5]; Plumbing Helper [191.07 h]; Labor [44.81 h]; Plumber [191.07 h]; Excavator [5.24 h]; Excavator Operator [238.84 h] | 5,842.24 | Z A |
|  | 1 | **bedding Works** |  | 2027-01-23 | 2027-02-11 |  |  |  |  |  |  |  |  |  |  |
| SDR-2-CON-TS-ZA-2750 |  | Sand bedding for Valve Chambers | 18d | 2027-01-23 | 2027-02-11 | SDR-2-CON-TS-ZA-2760 |  |  |  |  | 39d | 0d | SIC- Cost [9271.88]; Plumbing Helper [76.43 h]; Labor [51.21 h]; Plumber [76.43 h]; Excavator [16 h]; Excavator Operator [95.54 h] | 7,789.66 | Z A |
|  | 4 | **Install Chambers & Valves** |  | 2027-02-13 | 2027-03-14 |  |  |  |  |  |  |  |  |  |  |
| SDR-2-CON-TS-ZA-2770 |  | Valve Chambers & Valves Installation | 21d | 2027-02-13 | 2027-03-14 | SDR-2-CON-TS-ZA-2760, SDR-2-CON-TS-ZA-2750 |  |  |  |  | 39d | 0d | SIC- Cost [13106.5]; Plumbing Helper [114.64 h]; Labor [44.81 h]; Plumber [114.64 h]; Excavator [12 h]; Excavator Operator [143.3 h] | 35,053.45 | Z A |
|  | 5 | **Testing** |  | 2027-03-15 | 2027-03-27 |  |  |  |  |  |  |  |  |  |  |
| SDR-2-CON-TS-ZA-2780 |  | Testing Chambers & Valves Installation | 11d | 2027-03-15 | 2027-03-27 | SDR-2-CON-TS-ZA-2770 |  |  |  |  | 39d | 0d | SIC- Cost [1806.63]; Plumbing Helper [66.88 h]; Labor [44.81 h]; Plumber [66.88 h]; Excavator [14 h]; Excavator Operator [83.59 h] | 7,789.66 | Z A |
|  | 6 | **Backfilling** |  | 2027-03-28 | 2027-04-20 |  |  |  |  |  |  |  |  |  |  |
| SDR-2-CON-TS-ZA-2790 |  | Backfilling Chambers & Valves Installation | 21d | 2027-03-28 | 2027-04-20 | SDR-2-CON-TS-ZA-2780 |  |  |  |  | 47d | 46d | SIC- Cost [1334.15]; Plumbing Helper [71.98 h]; Labor [44.81 h]; Plumber [71.98 h]; Excavator [9.08 h]; Excavator Operator [76.49 h] | 15,579.31 | Z A |
|  | 7 | **TSE NETWORK IN ( PH2-A-MCG0 )** |  | 2026-11-01 | 2027-03-25 |  |  |  |  |  |  |  |  |  |  |
|  | 6 | **Pipes Work** |  | 2026-11-01 | 2027-03-15 |  |  |  |  |  |  |  |  |  |  |
|  | 1 | **Excavation** |  | 2026-11-01 | 2026-12-16 |  |  |  |  |  |  |  |  |  |  |
| SDR-2-CON-TS-ZA-3320 |  | Excavation for TSE HDPE Pipes 90 mm Section 1 | 20d | 2026-11-01 | 2026-11-23 | SDR-2-CON-SE-ZA-1860 |  |  |  |  | 23d | 0d | SIC- Cost [6976.73]; Plumbing Helper [81.48 h]; Labor [51.21 h]; Plumber [81.48 h]; Excavator [22.55 h]; Excavator Operator [81.48 h] | 3,488.37 | Z A |
| SDR-2-CON-TS-ZA-2800 |  | Excavation for TSE HDPE Pipes 90 mm Section 2 | 20d | 2026-11-24 | 2026-12-16 | SDR-2-CON-TS-ZA-3320 |  |  |  |  | 41d | 0d | SIC- Cost [6976.73]; Plumbing Helper [81.48 h]; Labor [51.21 h]; Plumber [81.48 h]; Excavator [22.55 h]; Excavator Operator [81.48 h] | 3,488.37 | Z A |

| ID | WBS | Activity | Duration | Start | Finish | Predecessors | Total float | Free float | Resources | Cost | ZONE A |
| --- | --- | --- | --- | --- | --- | --- | --- | --- | --- | --- | --- |
|  | 3 | **bedding Works** |  | 2026-12-17 | 2027-01-06 |  |  |  |  |  |  |
| SDR-2-CON-TS-ZA-2830 |  | Sand bedding for TSE HDPE Pipes 90 mm | 18d | 2026-12-17 | 2027-01-06 | SDR-2-CON-TS-ZA-2800 | 41d | 0d | SIC- Cost [6976.73]; Plumbing Helper [95.54 h]; Labor [51.21 h]; Plumber [95.54 h]; Excavator [6 h]; Excavator Operator [119.42 h] | 1,744.18 | Z A |
|  | 2 | **Pipes Laying** |  | 2027-01-07 | 2027-01-31 |  |  |  |  |  |  |
| SDR-2-CON-TS-ZA-2810 |  | Install TSE 90 mm HDPE Pipe | 21d | 2027-01-07 | 2027-01-31 | SDR-2-CON-TS-ZA-2830 | 41d | 0d | SIC- Cost; Plumbing Helper [81.48 h]; Labor [96.01 h]; Plumber [81.48 h]; Excavator [20 h]; Excavator Operator [81.48 h] | 15,697.64 | Z A |
|  | 5 | **Testing** |  | 2027-02-01 | 2027-02-15 |  |  |  |  |  |  |
| SDR-2-CON-TS-ZA-2820 |  | Testing of TSE HDPE Pipe 90 mm. | 13d | 2027-02-01 | 2027-02-15 | SDR-2-CON-TS-ZA-2810 | 41d | 0d | SIC- Cost [5232.55]; Plumbing Helper [57.32 h]; Labor [19.2 h]; Plumber [57.32 h]; Excavator [13.64 h]; Excavator Operator [71.65 h] | 3,488.37 | Z A |
|  | 4 | **Backfilling** |  | 2027-02-16 | 2027-03-15 |  |  |  |  |  |  |
| SDR-2-CON-TS-ZA-2840 |  | Backfilling of TSE HDPE Pipe 90 mm. | 19d | 2027-02-16 | 2027-03-15 | SDR-2-CON-TS-ZA-2820 | 41d | 29d | SIC- Cost [5232.55]; Plumbing Helper [181.52 h]; Labor [19.2 h]; Plumber [181.52 h]; Excavator [12 h]; Excavator Operator [226.9 h] | 6,976.73 | Z A |
|  | 3 | **Valve Chambers & Valves** |  | 2026-11-01 | 2027-03-25 |  |  |  |  |  |  |
|  | 3 | **Excavation** |  | 2026-11-01 | 2026-12-16 |  |  |  |  |  |  |
| SDR-2-CON-TS-ZA-3330 |  | Excavation for Valve Chambers Section 1 | 20d | 2026-11-01 | 2026-11-23 | SDR-2-CON-TS-ZA-3320 SS | 40d | 0d | SIC- Cost [43105.5]; Plumbing Helper [210.18 h]; Labor [44.81 h]; Plumber [210.18 h]; Excavator [12 h]; Excavator Operator [262.72 h] | 5,842.24 | Z A |
| SDR-2-CON-TS-ZA-2860 |  | Excavation for Valve Chambers Section 2 | 20d | 2026-11-24 | 2026-12-16 | SDR-2-CON-TS-ZA-3330 | 40d | 0d | SIC- Cost [43105.5]; Plumbing Helper [210.18 h]; Labor [44.81 h]; Plumber [210.18 h]; Excavator [12 h]; Excavator Operator [262.72 h] | 5,842.24 | Z A |
|  | 1 | **bedding Works** |  | 2026-12-17 | 2027-01-07 |  |  |  |  |  |  |
| SDR-2-CON-TS-ZA-2850 |  | Sand bedding for Valve Chambers | 19d | 2026-12-17 | 2027-01-07 | SDR-2-CON-TS-ZA-2860 | 40d | 0d | SIC- Cost [9271.88]; Plumbing Helper [76.43 h]; Labor [51.21 h]; Plumber [76.43 h]; Excavator [5 h]; Excavator Operator [95.54 h] | 7,789.66 | Z A |
|  | 4 | **Install Chambers & Valves** |  | 2027-01-09 | 2027-02-01 |  |  |  |  |  |  |
| SDR-2-CON-TS-ZA-2870 |  | Valve Chambers & Valves Installation | 21d | 2027-01-09 | 2027-02-01 | SDR-2-CON-TS-ZA-2860, SDR-2-CON-TS-ZA-2850 | 40d | 0d | SIC- Cost [13106.5]; Plumbing Helper [143.3 h]; Labor [44.81 h]; Plumber [143.3 h]; Excavator [12 h]; Excavator Operator [179.13 h] | 35,053.45 | Z A |
|  | 5 | **Testing** |  | 2027-02-02 | 2027-02-25 |  |  |  |  |  |  |
| SDR-2-CON-TS-ZA-2880 |  | Testing Chambers & Valves Installation | 20d | 2027-02-02 | 2027-02-25 | SDR-2-CON-TS-ZA-2870 | 40d | 0d | SIC- Cost [1806.63]; Plumbing Helper [66.88 h]; Labor [44.81 h]; Plumber [66.88 h]; Excavator [12 h]; Excavator Operator [83.59 h] | 7,789.66 | Z A |
|  | 6 | **Backfilling** |  | 2027-02-27 | 2027-03-25 |  |  |  |  |  |  |
| SDR-2-CON-TS-ZA-2890 |  | Backfilling Chambers & Valves Installation | 20d | 2027-02-27 | 2027-03-25 | SDR-2-CON-TS-ZA-2880 | 40d |  | SIC- Cost [1334.15]; Plumbing Helper [100.32 h]; Labor [44.81 h]; Plumber [100.32 h]; Excavator [8.97 h]; Excavator Operator [94.03 h] | 15,579.31 | Z A |
|  | 8 | **TSE NETWORK IN ( PH2-A-MCH0 )** |  | 2026-11-01 | 2027-05-04 |  |  |  |  |  |  |
|  | 6 | **Pipes Work** |  | 2026-11-01 | 2027-04-28 |  |  |  |  |  |  |
|  | 1 | **Excavation** |  | 2026-11-01 | 2027-01-28 |  |  |  |  |  |  |
| SDR-2-CON-TS-ZA-3340 |  | Excavation for TSE HDPE Pipes 250 mm Section 1 | 20d | 2026-11-01 | 2026-11-23 | SDR-2-CON-SE-ZA-1960 | 43d | 0d | SIC- Cost [32483.7]; Plumbing Helper [38.41 h]; Labor [38.41 h]; Plumber [38.41 h]; Excavator [12 h]; Excavator Operator [67.9 h] | 16,244.46 | Z A |
| SDR-2-CON-TS-ZA-1630 |  | Excavation for TSE HDPE Pipes 250 mm Section 2 | 20d | 2027-01-06 | 2027-01-28 | SDR-2-CON-TS-ZA-3340, SDR-2-CON-MV-ZA-1220, SDR-2-CON-MV-ZA-1180, SDR-2-CON-SL-ZA-2940 | 6d | 0d | SIC- Cost [32483.7]; Plumbing Helper [38.41 h]; Labor [38.41 h]; Plumber [38.41 h]; Excavator [12 h]; Excavator Operator [67.9 h] | 16,244.46 | Z A |

| ID | WBS | Activity | Duration | Start | Finish | Predecessors | Complete | Remaining | Planned start | Planned finish | Total float | Free float | Resources | Cost | ZONE A |
| --- | --- | --- | --- | --- | --- | --- | --- | --- | --- | --- | --- | --- | --- | --- | --- |
|  | 7 | **bedding Works** |  | 2027-01-30 | 2027-02-23 |  |  |  |  |  |  |  |  |  |  |
| SDR-2-CON-TS-ZA-1960 |  | Sand bedding for TSE HDPE Pipes 250 mm | 21d | 2027-01-30 | 2027-02-23 | SDR-2-CON-SL-ZA-3210, SDR-2-CON-TS-ZA-1630 |  |  |  |  | 11d | 0d | SIC- Cost [32483.7]; Plumbing Helper [38.41 h]; Labor [38.41 h]; Plumber [38.41 h]; Excavator [6.82 h]; Excavator Operator [81.48 h] | 8,122.24 | Z A |
|  | 2 | **Pipes Laying** |  | 2027-02-24 | 2027-03-24 |  |  |  |  |  |  |  |  |  |  |
| SDR-2-CON-TS-ZA-1640 |  | Install TSE 250 mm HDPE Pipe | 21d | 2027-02-24 | 2027-03-24 | SDR-2-CON-TS-ZA-1630, SDR-2-CON-TS-ZA-1960 |  |  |  |  | 11d | 0d | SIC- Cost; Plumbing Helper [76.81 h]; Labor [76.81 h]; Plumber [76.81 h]; Excavator [12 h]; Excavator Operator [81.48 h] | 73,100.09 | Z A |
|  | 5 | **Testing** |  | 2027-03-25 | 2027-04-12 |  |  |  |  |  |  |  |  |  |  |
| SDR-2-CON-TS-ZA-1710 |  | Testing of TSE HDPE Pipe 250 mm. | 16d | 2027-03-25 | 2027-04-12 | SDR-2-CON-TS-ZA-1640 |  |  |  |  | 11d | 0d | SIC- Cost [24362.8]; Plumbing Helper [19.2 h]; Labor [19.2 h]; Plumber [19.2 h]; Excavator [12 h]; Excavator Operator [95.54 h] | 16,244.46 | Z A |
|  | 8 | **Backfilling** |  | 2027-04-13 | 2027-04-28 |  |  |  |  |  |  |  |  |  |  |
| SDR-2-CON-TS-ZA-1970 |  | Backfilling of TSE HDPE Pipe 250 mm. | 14d | 2027-04-13 | 2027-04-28 | SDR-2-CON-TS-ZA-1710, SDR-2-CON-TS-ZA-1960 FS+14d |  |  |  |  | 11d |  | SIC- Cost [24362.8]; Plumbing Helper [19.2 h]; Labor [19.2 h]; Plumber [19.2 h]; Excavator [8 h]; Excavator Operator [76.84 h] | 32,488.93 | Z A |
|  | 3 | **Valve Chambers & Valves** |  | 2026-11-01 | 2027-05-04 |  |  |  |  |  |  |  |  |  |  |
|  | 3 | **Excavation** |  | 2026-11-01 | 2027-01-28 |  |  |  |  |  |  |  |  |  |  |
| SDR-2-CON-TS-ZA-3350 |  | Excavation for Valve Chambers Section 1 | 20d | 2026-11-01 | 2026-11-23 | SDR-2-CON-TS-ZA-3340 SS |  |  |  |  | 43d | 37d | SIC- Cost [43105.5]; Plumbing Helper [277.05 h]; Labor [44.81 h]; Plumber [277.05 h]; Excavator [16 h]; Excavator Operator [346.32 h] | 5,842.24 | Z A |
| SDR-2-CON-TS-ZA-2110 |  | Excavation for Valve Chambers Section 2 | 20d | 2027-01-06 | 2027-01-28 | SDR-2-CON-TS-ZA-3350, SDR-2-CON-TS-ZA-1630 SS |  |  |  |  | 6d | 0d | SIC- Cost [43105.5]; Plumbing Helper [277.05 h]; Labor [44.81 h]; Plumber [277.05 h]; Excavator [10.9 h]; Excavator Operator [346.32 h] | 5,842.24 | Z A |
|  | 1 | **bedding Works** |  | 2027-01-30 | 2027-02-23 |  |  |  |  |  |  |  |  |  |  |
| SDR-2-CON-TS-ZA-2100 |  | Sand bedding for Valve Chambers | 21d | 2027-01-30 | 2027-02-23 | SDR-2-CON-SL-ZA-3210, SDR-2-CON-TS-ZA-2110 |  |  |  |  | 6d | 0d | SIC- Cost [9271.88]; Plumbing Helper [76.43 h]; Labor [51.21 h]; Plumber [76.43 h]; Excavator [9.89 h]; Excavator Operator [95.54 h] | 7,789.66 | Z A |
|  | 4 | **Install Chambers & Valves** |  | 2027-02-24 | 2027-03-24 |  |  |  |  |  |  |  |  |  |  |
| SDR-2-CON-TS-ZA-2120 |  | Valve Chambers & Valves Installation | 21d | 2027-02-24 | 2027-03-24 | SDR-2-CON-TS-ZA-2110, SDR-2-CON-TS-ZA-2100 |  |  |  |  | 6d | 0d | SIC- Cost [13106.5]; Plumbing Helper [114.64 h]; Labor [44.81 h]; Plumber [114.64 h]; Excavator [12 h]; Excavator Operator [143.3 h] | 35,053.45 | Z A |
|  | 5 | **Testing** |  | 2027-03-25 | 2027-04-11 |  |  |  |  |  |  |  |  |  |  |
| SDR-2-CON-TS-ZA-2130 |  | Testing Chambers & Valves Installation | 15d | 2027-03-25 | 2027-04-11 | SDR-2-CON-TS-ZA-2120 |  |  |  |  | 6d | 0d | SIC- Cost [1806.63]; Plumbing Helper [76.43 h]; Labor [44.81 h]; Plumber [76.43 h]; Excavator [16 h]; Excavator Operator [95.54 h] | 7,789.66 | Z A |
|  | 6 | **Backfilling** |  | 2027-04-12 | 2027-05-04 |  |  |  |  |  |  |  |  |  |  |
| SDR-2-CON-TS-ZA-2140 |  | Backfilling Chambers & Valves Installation | 20d | 2027-04-12 | 2027-05-04 | SDR-2-CON-TS-ZA-2130 |  |  |  |  | 6d |  | SIC- Cost [1334.15]; Plumbing Helper [95.07 h]; Labor [44.81 h]; Plumber [95.07 h]; Excavator [8.28 h]; Excavator Operator [76.84 h] | 15,579.31 | Z A |
|  | 9 | **TSE NETWORK IN ( PH2-ART-MCA0 )** |  | 2026-09-07 | 2027-04-14 |  |  |  |  |  |  |  |  |  |  |
|  | 6 | **Pipes Work** |  | 2026-09-07 | 2027-03-22 |  |  |  |  |  |  |  |  |  |  |
|  | 1 | **Excavation** |  | 2026-09-07 | 2026-12-16 |  |  |  |  |  |  |  |  |  |  |
| SDR-2-CON-TS-ZA-3360 |  | Excavation for TSE HDPE Pipes 450 mm Section 1 | 20d | 2026-09-07 A | 2026-09-14 A | SDR-2-CON-TS-ZA-3320 | 100% |  | 2026-11-21 | 2026-12-13 |  |  | SIC- Cost [148888]; Plumbing Helper [38.41 h]; Labor [38.41 h]; Plumber [38.41 h]; Excavator [12 h]; Excavator Operator [81.48 h] | 74,446.63 |  |
| SDR-2-CON-TS-ZA-1720 |  | Excavation for TSE HDPE Pipes 450 mm Section 2 | 20d | 2026-10-01 A | 2026-12-16 | SDR-2-CON-TS-ZA-3360 | 25% | 20d | 2026-10-28 | 2026-11-19 | 43d | 0d | SIC- Cost [148888]; Plumbing Helper [38.41 h]; Labor [38.41 h]; Plumber [38.41 h]; Excavator [9.17 h]; Excavator Operator [81.48 h] | 74,446.63 |  |

| ID | WBS | Activity | Duration | Start | Finish | Predecessors | Complete | Remaining | Planned start | Planned finish | Total float | Free float | Resources | Cost | ZONE A |
| --- | --- | --- | --- | --- | --- | --- | --- | --- | --- | --- | --- | --- | --- | --- | --- |
|  | 7 | **bedding Works** |  | 2026-10-20 | 2027-01-10 |  |  |  |  |  |  |  |  |  |  |
| SDR-2-CON-TS-ZA-1980 |  | Sand bedding for TSE HDPE Pipes 450 mm | 21d | 2026-10-20 A | 2027-01-10 | SDR-2-CON-TS-ZA-1720 | 10% | 21d | 2026-12-12 | 2027-01-04 | 43d | 0d | SIC- Cost [148888]; Plumbing Helper [38.41 h]; Labor [38.41 h]; Plumber [38.41 h]; Excavator [12 h]; Excavator Operator [67.9 h] | 37,223.31 |  |
|  | 2 | **Pipes Laying** |  | 2026-10-22 | 2027-02-03 |  |  |  |  |  |  |  |  |  |  |
| SDR-2-CON-TS-ZA-1730 |  | Install TSE 450 mm HDPE Pipe | 21d | 2026-10-22 A | 2027-02-03 | SDR-2-CON-TS-ZA-1720, SDR-2-CON-TS-ZA-1980 | 10% | 21d | 2027-01-05 | 2027-01-28 | 43d | 0d | SIC- Cost [483886]; Plumbing Helper [76.81 h]; Labor [76.81 h]; Plumber [76.81 h]; Excavator [12 h]; Excavator Operator [81.48 h] | 335,039.84 |  |
|  | 5 | **Testing** |  | 2027-02-04 | 2027-02-21 |  |  |  |  |  |  |  |  |  |  |
| SDR-2-CON-TS-ZA-1800 |  | Testing of TSE HDPE Pipe 450 mm. | 15d | 2027-02-04 | 2027-02-21 | SDR-2-CON-TS-ZA-1730 |  |  |  |  | 43d | 0d | SIC- Cost [111666]; Plumbing Helper [19.2 h]; Labor [19.2 h]; Plumber [19.2 h]; Excavator [12 h]; Excavator Operator [67.9 h] | 74,446.63 |  |
|  | 8 | **Backfilling** |  | 2027-02-23 | 2027-03-22 |  |  |  |  |  |  |  |  |  |  |
| SDR-2-CON-TS-ZA-1990 |  | Backfilling of TSE HDPE Pipe 450 mm. | 20d | 2027-02-23 | 2027-03-22 | SDR-2-CON-TS-ZA-1800, SDR-2-CON-TS-ZA-1980 FS+12d |  |  |  |  | 43d |  | SIC- Cost [111666]; Plumbing Helper [19.2 h]; Labor [19.2 h]; Plumber [19.2 h]; Excavator [8.28 h]; Excavator Operator [81.33 h] | 148,893.25 |  |
|  | 3 | **Valve Chambers & Valves** |  | 2026-11-24 | 2027-04-14 |  |  |  |  |  |  |  |  |  |  |
|  | 3 | **Excavation** |  | 2026-11-24 | 2027-01-09 |  |  |  |  |  |  |  |  |  |  |
| SDR-2-CON-TS-ZA-3370 |  | Excavation for Valve Chambers Section 1 | 20d | 2026-11-24 | 2026-12-16 | SDR-2-CON-TS-ZA-3360 SS |  |  |  |  | 23d | 0d | SIC- Cost [43105.5]; Plumbing Helper [238.84 h]; Labor [44.81 h]; Plumber [238.84 h]; Excavator [16 h]; Excavator Operator [298.55 h] | 5,842.24 |  |
| SDR-2-CON-TS-ZA-2160 |  | Excavation for Valve Chambers Section 2 | 20d | 2026-12-17 | 2027-01-09 | SDR-2-CON-TS-ZA-3370 |  |  |  |  | 23d | 0d | SIC- Cost [43105.5]; Plumbing Helper [238.84 h]; Labor [44.81 h]; Plumber [238.84 h]; Excavator [8.96 h]; Excavator Operator [298.55 h] | 5,842.24 |  |
|  | 1 | **bedding Works** |  | 2027-01-10 | 2027-02-02 |  |  |  |  |  |  |  |  |  |  |
| SDR-2-CON-TS-ZA-2150 |  | Sand bedding for Valve Chambers | 21d | 2027-01-10 | 2027-02-02 | SDR-2-CON-TS-ZA-2160 |  |  |  |  | 23d | 0d | SIC- Cost [9271.88]; Plumbing Helper [114.64 h]; Labor [51.21 h]; Plumber [114.64 h]; Excavator [12 h]; Excavator Operator [143.3 h] | 7,789.66 |  |
|  | 4 | **Install Chambers & Valves** |  | 2027-02-03 | 2027-02-28 |  |  |  |  |  |  |  |  |  |  |
| SDR-2-CON-TS-ZA-2170 |  | Valve Chambers & Valves Installation | 21d | 2027-02-03 | 2027-02-28 | SDR-2-CON-TS-ZA-2160, SDR-2-CON-TS-ZA-2150 |  |  |  |  | 23d | 0d | SIC- Cost [13106.5]; Plumbing Helper [152.86 h]; Labor [44.81 h]; Plumber [152.86 h]; Excavator [12 h]; Excavator Operator [191.07 h] | 35,053.45 |  |
|  | 5 | **Testing** |  | 2027-03-01 | 2027-03-22 |  |  |  |  |  |  |  |  |  |  |
| SDR-2-CON-TS-ZA-2180 |  | Testing Chambers & Valves Installation | 15d | 2027-03-01 | 2027-03-22 | SDR-2-CON-TS-ZA-2170 |  |  |  |  | 23d | 0d | SIC- Cost [1806.63]; Plumbing Helper [76.43 h]; Labor [44.81 h]; Plumber [76.43 h]; Excavator [12 h]; Excavator Operator [95.54 h] | 7,789.66 |  |
|  | 6 | **Backfilling** |  | 2027-03-23 | 2027-04-14 |  |  |  |  |  |  |  |  |  |  |
| SDR-2-CON-TS-ZA-2190 |  | Backfilling Chambers & Valves Installation | 20d | 2027-03-23 | 2027-04-14 | SDR-2-CON-TS-ZA-2180 |  |  |  |  | 23d |  | SIC- Cost [1334.15]; Plumbing Helper [94.59 h]; Labor [44.81 h]; Plumber [94.59 h]; Excavator [8.28 h]; Excavator Operator [85.82 h] | 15,579.31 |  |
|  | 10 | **TSE NETWORK IN ( PH2-ART-MC10 )** |  | 2026-08-06 | 2027-04-04 |  |  |  |  |  |  |  |  |  |  |
|  | 6 | **Pipes Work** |  | 2026-08-06 | 2027-01-03 |  |  |  |  |  |  |  |  |  |  |
|  | 1 | **Excavation** |  | 2026-08-06 | 2026-10-01 |  |  |  |  |  |  |  |  |  |  |
| SDR-2-CON-TS-ZA-3380 |  | Excavation for TSE HDPE Pipes 450 mm Section 1 | 20d | 2026-08-06 A | 2026-09-03 A | SDR-2-CON-TS-ZA-3360 | 100% |  | 2026-12-02 | 2026-12-24 |  |  | SIC- Cost [148888]; Plumbing Helper [38.41 h]; Labor [38.41 h]; Plumber [38.41 h]; Excavator [16.05 h]; Excavator Operator [81.48 h] | 74,446.63 | Z A |
| SDR-2-CON-TS-ZA-3100 |  | Excavation for TSE HDPE Pipes 450 mm Section 2 | 19d | 2026-08-25 A | 2026-10-01 A | SDR-2-CON-TS-ZA-3380, SDR-2-CON-SL-ZA-3170 FF | 100% |  | 2026-12-28 | 2027-01-18 |  |  | SIC- Cost [148888]; Plumbing Helper [38.41 h]; Labor [38.41 h]; Plumber [38.41 h]; Excavator [5 h]; Excavator Operator [81.48 h] | 74,446.63 | Z A |

| ID | WBS | Activity | Duration | Start | Finish | Predecessors | Complete | Remaining | Planned start | Planned finish | Total float | Free float | Resources | Cost | ZONE A | ZONE G |
| --- | --- | --- | --- | --- | --- | --- | --- | --- | --- | --- | --- | --- | --- | --- | --- | --- |
|  | 7 | **bedding Works** |  | 2026-08-13 | 2027-01-03 |  |  |  |  |  |  |  |  |  |  |  |
| SDR-2-CON-TS-ZA-3130 |  | Sand bedding for TSE HDPE Pipes 450 mm | 15d | 2026-08-13 A | 2027-01-03 | SDR-2-CON-TS-ZA-3100 FF | 75% | 1d | 2027-01-19 | 2027-02-04 | 105d | 0d | SIC- Cost [148888]; Plumbing Helper [38.41 h]; Labor [38.41 h]; Plumber [38.41 h]; Excavator [6 h]; Excavator Operator [81.48 h] | 37,223.31 | Z A |  |
|  | 2 | **Pipes Laying** |  | 2026-08-17 | 2027-01-03 |  |  |  |  |  |  |  |  |  |  |  |
| SDR-2-CON-TS-ZA-3110 |  | Install TSE 450 mm HDPE Pipe | 21d | 2026-08-17 A | 2027-01-03 | SDR-2-CON-TS-ZA-3100 FF, SDR-2-CON-TS-ZA-3130 FF | 75% | 1d | 2027-02-06 | 2027-03-02 | 105d | 0d | SIC- Cost [483886]; Plumbing Helper [67.9 h]; Labor [67.9 h]; Plumber [67.9 h]; Excavator [12 h]; Excavator Operator [67.9 h] | 335,039.84 | Z A |  |
|  | 5 | **Testing** |  | 2026-08-25 | 2027-01-03 |  |  |  |  |  |  |  |  |  |  |  |
| SDR-2-CON-TS-ZA-3120 |  | Testing of TSE HDPE Pipe 450 mm. | 13d | 2026-08-25 A | 2027-01-03 | SDR-2-CON-TS-ZA-3110 FF | 50% | 1d | 2027-03-03 | 2027-03-22 | 105d | 0d | SIC- Cost [111666]; Plumbing Helper [19.2 h]; Labor [19.2 h]; Plumber [19.2 h]; Excavator [14.5 h]; Excavator Operator [95.54 h] | 74,446.63 | Z A |  |
|  | 8 | **Backfilling** |  | 2026-08-31 | 2027-01-03 |  |  |  |  |  |  |  |  |  |  |  |
| SDR-2-CON-TS-ZA-3140 |  | Backfilling of TSE HDPE Pipe 450 mm. | 19d | 2026-08-31 A | 2027-01-03 | SDR-2-CON-TS-ZA-3120 FF | 50% | 1.1d | 2027-03-23 | 2027-04-13 | 105d |  | SIC- Cost [111666]; Plumbing Helper [19.2 h]; Labor [19.2 h]; Plumber [19.2 h]; Excavator [8.68 h]; Excavator Operator [81.48 h] | 148,893.25 | Z A |  |
|  | 3 | **Valve Chambers & Valves** |  | 2026-11-24 | 2027-04-04 |  |  |  |  |  |  |  |  |  |  |  |
|  | 3 | **Excavation** |  | 2026-11-24 | 2027-01-07 |  |  |  |  |  |  |  |  |  |  |  |
| SDR-2-CON-TS-ZA-3390 |  | Excavation for Valve Chambers Section 1 | 20d | 2026-11-24 | 2026-12-16 | SDR-2-CON-TS-ZA-3380 SS |  |  |  |  | 32d | 0d | SIC- Cost [43105.5]; Plumbing Helper [219.73 h]; Labor [44.81 h]; Plumber [219.73 h]; Excavator [18 h]; Excavator Operator [274.67 h] | 5,842.24 | Z A |  |
| SDR-2-CON-TS-ZA-3160 |  | Excavation for Valve Chambers Section 2 | 19d | 2026-12-17 | 2027-01-07 | SDR-2-CON-TS-ZA-3390, SDR-2-CON-ST-ZA-5550 |  |  |  |  | 32d | 0d | SIC- Cost [43105.5]; Plumbing Helper [219.73 h]; Labor [44.81 h]; Plumber [219.73 h]; Excavator [5 h]; Excavator Operator [274.67 h] | 5,842.24 | Z A |  |
|  | 1 | **bedding Works** |  | 2027-01-09 | 2027-01-28 |  |  |  |  |  |  |  |  |  |  |  |
| SDR-2-CON-TS-ZA-3150 |  | Sand bedding for Valve Chambers | 18d | 2027-01-09 | 2027-01-28 | SDR-2-CON-TS-ZA-3160 |  |  |  |  | 32d | 0d | SIC- Cost [9271.88]; Plumbing Helper [76.43 h]; Labor [51.21 h]; Plumber [76.43 h]; Excavator [6 h]; Excavator Operator [95.54 h] | 7,789.66 | Z A |  |
|  | 4 | **Install Chambers & Valves** |  | 2027-01-30 | 2027-02-23 |  |  |  |  |  |  |  |  |  |  |  |
| SDR-2-CON-TS-ZA-3170 |  | Valve Chambers & Valves Installation | 21d | 2027-01-30 | 2027-02-23 | SDR-2-CON-TS-ZA-3160, SDR-2-CON-TS-ZA-3150 |  |  |  |  | 32d | 0d | SIC- Cost [13106.5]; Plumbing Helper [114.64 h]; Labor [44.81 h]; Plumber [114.64 h]; Excavator [12 h]; Excavator Operator [143.3 h] | 35,053.45 | Z A |  |
|  | 5 | **Testing** |  | 2027-02-24 | 2027-03-07 |  |  |  |  |  |  |  |  |  |  |  |
| SDR-2-CON-TS-ZA-3180 |  | Testing Chambers & Valves Installation | 10d | 2027-02-24 | 2027-03-07 | SDR-2-CON-TS-ZA-3170 |  |  |  |  | 32d | 0d | SIC- Cost [1806.63]; Plumbing Helper [76.43 h]; Labor [44.81 h]; Plumber [76.43 h]; Excavator [6 h]; Excavator Operator [95.54 h] | 7,789.66 | Z A |  |
|  | 6 | **Backfilling** |  | 2027-03-08 | 2027-04-04 |  |  |  |  |  |  |  |  |  |  |  |
| SDR-2-CON-TS-ZA-3190 |  | Backfilling Chambers & Valves Installation | 20d | 2027-03-08 | 2027-04-04 | SDR-2-CON-TS-ZA-3180 |  |  |  |  | 32d |  | SIC- Cost [1334.15]; Plumbing Helper [90.29 h]; Labor [44.81 h]; Plumber [90.29 h]; Excavator [16.2 h]; Excavator Operator [79.47 h] | 15,579.31 | Z A |  |
|  | ZG | **ZONE G** |  | 2026-08-12 | 2027-06-19 |  |  |  |  |  |  |  |  |  |  |  |
|  | 1 | **TSE NETWORK IN ( PH2-G-MCA0 )** |  | 2026-08-12 | 2027-03-21 |  |  |  |  |  |  |  |  |  |  |  |
|  | 6 | **Pipes Work** |  | 2026-08-12 | 2026-12-09 |  |  |  |  |  |  |  |  |  |  |  |
|  | 1 | **Excavation** |  | 2026-08-12 | 2026-11-01 |  |  |  |  |  |  |  |  |  |  |  |
| SDR-2-CON-TS-ZA-2300 |  | Excavation for TSE HDPE Pipes 225 mm Section 2 | 21d | 2026-08-12 A | 2026-11-01 | SDR-2-CON-TS-ZA-3400 FF | 30% | 1d | 2026-12-24 | 2027-01-17 | 64d | 0d | SIC- Cost [43139.2]; Plumbing Helper [67.9 h]; Labor [51.21 h]; Plumber [67.9 h]; Excavator [12 h]; Excavator Operator [67.9 h] | 21,569.6 |  | Z G |
| SDR-2-CON-TS-ZA-3400 |  | Excavation for TSE HDPE Pipes 225 mm Section 1 | 21d | 2026-08-12 A | 2026-11-01 | SDR-2-CON-SE-ZA-2360 | 30% | 1d | 2026-11-30 | 2026-12-23 | 44d | 0d | SIC- Cost [43139.2]; Plumbing Helper [67.9 h]; Labor [51.21 h]; Plumber [67.9 h]; Excavator [12 h]; Excavator Operator [67.9 h] | 21,569.6 |  | Z G |

| ID | WBS | Activity | Duration | Start | Finish | Predecessors | Complete | Remaining | Planned start | Planned finish | Total float | Free float | Resources | Cost | ZONE G |
| --- | --- | --- | --- | --- | --- | --- | --- | --- | --- | --- | --- | --- | --- | --- | --- |
|  | 6 | **bedding Works** |  | 2026-08-24 | 2026-11-01 |  |  |  |  |  |  |  |  |  |  |
| SDR-2-CON-TS-ZA-2380 |  | Sand bedding for TSE HDPE Pipes 225 mm | 21d | 2026-08-24 A | 2026-11-01 | SDR-2-CON-TS-ZA-2300 FF | 20% | 1d | 2027-01-18 | 2027-02-10 | 126d | 0d | SIC- Cost [43139.2]; Plumbing Helper [95.54 h]; Labor [51.21 h]; Plumber [95.54 h]; Excavator [12 h]; Excavator Operator [119.42 h] | 10,784.79 | Z G |
|  | 2 | **Pipes Laying** |  | 2026-08-25 | 2026-11-01 |  |  |  |  |  |  |  |  |  |  |
| SDR-2-CON-TS-ZA-2310 |  | Install TSE 225 mm HDPE Pipe | 21d | 2026-08-25 A | 2026-11-01 | SDR-2-CON-TS-ZA-2300 FF, SDR-2-CON-TS-ZA-2380 FF | 20% | 1d | 2027-02-11 | 2027-03-08 | 126d | 0d | SIC- Cost; Plumbing Helper [81.48 h]; Labor [96.01 h]; Plumber [81.48 h]; Excavator [12 h]; Excavator Operator [135.79 h] | 97,063.15 | Z G |
|  | 5 | **Testing** |  | 2026-11-02 | 2026-11-16 |  |  |  |  |  |  |  |  |  |  |
| SDR-2-CON-TS-ZA-2370 |  | Testing of TSE HDPE Pipe 225 mm. | 13d | 2026-11-02 | 2026-11-16 | SDR-2-CON-TS-ZA-2310 |  |  |  |  | 126d | 0d | SIC- Cost [32354.4]; Plumbing Helper [76.43 h]; Labor [32 h]; Plumber [76.43 h]; Excavator [12 h]; Excavator Operator [95.54 h] | 21,569.6 | Z G |
|  | 7 | **Backfilling** |  | 2026-11-17 | 2026-12-09 |  |  |  |  |  |  |  |  |  |  |
| SDR-2-CON-TS-ZA-2390 |  | Backfilling of TSE HDPE Pipe 225 mm. | 20d | 2026-11-17 | 2026-12-09 | SDR-2-CON-TS-ZA-2370 |  |  |  |  | 126d |  | SIC- Cost [32354.4]; Plumbing Helper [64.5 h]; Labor [32 h]; Plumber [64.5 h]; Excavator [8.28 h]; Excavator Operator [72 h] | 43,139.18 | Z G |
|  | 3 | **Valve Chambers & Valves** |  | 2026-11-01 | 2027-03-21 |  |  |  |  |  |  |  |  |  |  |
|  | 3 | **Excavation** |  | 2026-11-01 | 2026-12-16 |  |  |  |  |  |  |  |  |  |  |
| SDR-2-CON-TS-ZA-3410 |  | Excavation for Valve Chambers Section 1 | 20d | 2026-11-01 | 2026-11-23 | SDR-2-CON-TS-ZA-3400 SS |  |  |  |  | 44d | 0d | SIC- Cost [43105.5]; Plumbing Helper [171.96 h]; Labor [44.81 h]; Plumber [171.96 h]; Excavator [12 h]; Excavator Operator [214.96 h] | 5,842.24 | Z G |
| SDR-2-CON-TS-ZA-2330 |  | Excavation for Valve Chambers Section 2 | 20d | 2026-11-24 | 2026-12-16 | SDR-2-CON-TS-ZA-3410 |  |  |  |  | 44d | 0d | SIC- Cost [43105.5]; Plumbing Helper [171.96 h]; Labor [44.81 h]; Plumber [171.96 h]; Excavator [12 h]; Excavator Operator [214.96 h] | 5,842.24 | Z G |
|  | 1 | **bedding Works** |  | 2026-12-17 | 2027-01-10 |  |  |  |  |  |  |  |  |  |  |
| SDR-2-CON-TS-ZA-2320 |  | Sand bedding for Valve Chambers | 21d | 2026-12-17 | 2027-01-10 | SDR-2-CON-ST-ZA-6080, SDR-2-CON-ST-ZA-5630, SDR-2-CON-ST-ZA-5550, SDR-2-CON-TS-ZA-2330 |  |  |  |  | 44d | 0d | SIC- Cost [9271.88]; Plumbing Helper [95.54 h]; Labor [51.21 h]; Plumber [95.54 h]; Excavator [12 h]; Excavator Operator [119.42 h] | 7,789.66 | Z G |
|  | 4 | **Install Chambers & Valves** |  | 2027-01-11 | 2027-02-03 |  |  |  |  |  |  |  |  |  |  |
| SDR-2-CON-TS-ZA-2340 |  | Valve Chambers & Valves Installation | 21d | 2027-01-11 | 2027-02-03 | SDR-2-CON-TS-ZA-2330, SDR-2-CON-TS-ZA-2320 |  |  |  |  | 44d | 0d | SIC- Cost [13106.5]; Plumbing Helper [133.75 h]; Labor [44.81 h]; Plumber [133.75 h]; Excavator [12 h]; Excavator Operator [167.19 h] | 35,053.45 | Z G |
|  | 5 | **Testing** |  | 2027-02-04 | 2027-02-18 |  |  |  |  |  |  |  |  |  |  |
| SDR-2-CON-TS-ZA-2350 |  | Testing Chambers & Valves Installation | 13d | 2027-02-04 | 2027-02-18 | SDR-2-CON-TS-ZA-2340 |  |  |  |  | 44d | 0d | SIC- Cost [1806.63]; Plumbing Helper [76.43 h]; Labor [44.81 h]; Plumber [76.43 h]; Excavator [12 h]; Excavator Operator [95.54 h] | 7,789.66 | Z G |
|  | 6 | **Backfilling** |  | 2027-02-21 | 2027-03-21 |  |  |  |  |  |  |  |  |  |  |
| SDR-2-CON-TS-ZA-2360 |  | Backfilling Chambers & Valves Installation | 20d | 2027-02-21 | 2027-03-21 | SDR-2-CON-TS-ZA-2350 FS+1d |  |  |  |  | 44d |  | SIC- Cost [1334.15]; Plumbing Helper [70.71 h]; Labor [44.81 h]; Plumber [70.71 h]; Excavator [8 h]; Excavator Operator [70.14 h] | 15,579.31 | Z G |
|  | 2 | **TSE NETWORK IN ( PH2-G-MCE0 )** |  | 2026-08-12 | 2027-05-29 |  |  |  |  |  |  |  |  |  |  |
|  | 6 | **Pipes Work** |  | 2026-08-12 | 2027-01-25 |  |  |  |  |  |  |  |  |  |  |
|  | 1 | **Excavation** |  | 2026-08-12 | 2026-11-01 |  |  |  |  |  |  |  |  |  |  |
| SDR-2-CON-TS-ZA-2400 |  | Excavation for TSE HDPE Pipes 125 mm Section 2 | 20d | 2026-08-12 A | 2026-11-01 | SDR-2-CON-TS-ZA-3420 FF | 30% | 1d | 2026-12-27 | 2027-01-18 | 73d | 0d | SIC- Cost; Plumbing Helper [81.48 h]; Labor [51.21 h]; Plumber [81.48 h]; Excavator [6.14 h]; Excavator Operator [81.48 h] | 15,714.04 | Z G |
| SDR-2-CON-TS-ZA-3420 |  | Excavation for TSE HDPE Pipes 125 mm Section 1 | 21d | 2026-08-12 A | 2026-11-01 | SDR-2-CON-SE-ZA-2060 | 30% | 1d | 2026-12-02 | 2026-12-26 | 73d | 0d | SIC- Cost; Plumbing Helper [81.48 h]; Labor [51.21 h]; Plumber [81.48 h]; Excavator [12 h]; Excavator Operator [81.48 h] | 15,714.04 | Z G |

| ID | WBS | Activity | Duration | Start | Finish | Predecessors | Complete | Remaining | Planned start | Planned finish | Total float | Free float | Resources | Cost | ZONE G |
| --- | --- | --- | --- | --- | --- | --- | --- | --- | --- | --- | --- | --- | --- | --- | --- |
|  | 3 | **bedding Works** |  | 2026-11-02 | 2026-11-25 |  |  |  |  |  |  |  |  |  |  |
| SDR-2-CON-TS-ZA-2430 |  | Sand bedding for TSE HDPE Pipes 125 mm | 21d | 2026-11-02 | 2026-11-25 | SDR-2-CON-ST-ZA-6080, SDR-2-CON-TS-ZA-2400 |  |  |  |  | 86d | 0d | SIC- Cost [31428.1]; Plumbing Helper [67.9 h]; Labor [51.21 h]; Plumber [67.9 h]; Excavator [12 h]; Excavator Operator [67.9 h] | 7,857.01 | Z G |
|  | 2 | **Pipes Laying** |  | 2026-11-26 | 2026-12-20 |  |  |  |  |  |  |  |  |  |  |
| SDR-2-CON-TS-ZA-2410 |  | Install TSE 125 mm HDPE Pipe | 21d | 2026-11-26 | 2026-12-20 | SDR-2-CON-TS-ZA-2400, SDR-2-CON-TS-ZA-2430 |  |  |  |  | 86d | 0d | SIC- Cost; Plumbing Helper [67.9 h]; Labor [67.9 h]; Plumber [67.9 h]; Excavator [16 h]; Excavator Operator [67.9 h] | 70,713.15 | Z G |
|  | 5 | **Testing** |  | 2026-12-21 | 2026-12-31 |  |  |  |  |  |  |  |  |  |  |
| SDR-2-CON-TS-ZA-2420 |  | Testing of TSE HDPE Pipe 125 mm. | 10d | 2026-12-21 | 2026-12-31 | SDR-2-CON-TS-ZA-2410 |  |  |  |  | 86d | 0d | SIC- Cost [23571]; Plumbing Helper [76.43 h]; Labor [25.6 h]; Plumber [76.43 h]; Excavator [9.5 h]; Excavator Operator [95.54 h] | 15,714.03 | Z G |
|  | 4 | **Backfilling** |  | 2027-01-02 | 2027-01-25 |  |  |  |  |  |  |  |  |  |  |
| SDR-2-CON-TS-ZA-2440 |  | Backfilling of TSE HDPE Pipe 125 mm. | 21d | 2027-01-02 | 2027-01-25 | SDR-2-CON-TS-ZA-2420 |  |  |  |  | 86d |  | SIC- Cost [23571]; Plumbing Helper [81.08 h]; Labor [25.6 h]; Plumber [59.53 h]; Excavator [8.26 h]; Excavator Operator [81.48 h] | 31,428.07 | Z G |
|  | 3 | **Valve Chambers & Valves** |  | 2026-11-02 | 2027-05-29 |  |  |  |  |  |  |  |  |  |  |
|  | 3 | **Excavation** |  | 2026-11-02 | 2026-12-20 |  |  |  |  |  |  |  |  |  |  |
| SDR-2-CON-TS-ZA-3430 |  | Excavation for Valve Chambers Section 1 | 21d | 2026-11-02 | 2026-11-25 | SDR-2-CON-TS-ZA-3400 |  |  |  |  | 56d | 0d | SIC- Cost [43105.5]; Plumbing Helper [229.29 h]; Labor [44.81 h]; Plumber [229.29 h]; Excavator [12 h]; Excavator Operator [286.61 h] | 5,842.24 | Z G |
| SDR-2-CON-TS-ZA-2460 |  | Excavation for Valve Chambers Section 2 | 21d | 2026-11-26 | 2026-12-20 | SDR-2-CON-TS-ZA-3430 |  |  |  |  | 56d | 0d | SIC- Cost [43105.5]; Plumbing Helper [229.29 h]; Labor [44.81 h]; Plumber [229.29 h]; Excavator [6.06 h]; Excavator Operator [286.61 h] | 5,842.24 | Z G |
|  | 1 | **bedding Works** |  | 2026-12-21 | 2027-01-13 |  |  |  |  |  |  |  |  |  |  |
| SDR-2-CON-TS-ZA-2450 |  | Sand bedding for Valve Chambers | 21d | 2026-12-21 | 2027-01-13 | SDR-2-CON-ST-ZA-6080, SDR-2-CON-TS-ZA-2460 |  |  |  |  | 56d | 55d | SIC- Cost [9271.88]; Plumbing Helper [76.43 h]; Labor [51.21 h]; Plumber [76.43 h]; Excavator [12 h]; Excavator Operator [95.54 h] | 7,789.66 | Z G |
|  | 4 | **Install Chambers & Valves** |  | 2027-03-25 | 2027-04-18 |  |  |  |  |  |  |  |  |  |  |
| SDR-2-CON-TS-ZA-2470 |  | Valve Chambers & Valves Installation | 21d | 2027-03-25 | 2027-04-18 | SDR-2-CON-TS-ZA-2530, SDR-2-CON-TS-ZA-2460, SDR-2-CON-TS-ZA-2450 |  |  |  |  | 1d | 0d | SIC- Cost [13106.5]; Plumbing Helper [143.3 h]; Labor [44.81 h]; Plumber [143.3 h]; Excavator [12 h]; Excavator Operator [179.13 h] | 35,053.45 | Z G |
|  | 5 | **Testing** |  | 2027-04-19 | 2027-04-28 |  |  |  |  |  |  |  |  |  |  |
| SDR-2-CON-TS-ZA-2480 |  | Testing Chambers & Valves Installation | 9d | 2027-04-19 | 2027-04-28 | SDR-2-CON-TS-ZA-2470 |  |  |  |  | 1d | 0d | SIC- Cost [1806.63]; Plumbing Helper [76.43 h]; Labor [44.81 h]; Plumber [76.43 h]; Excavator [6 h]; Excavator Operator [95.54 h] | 7,789.66 | Z G |
|  | 6 | **Backfilling** |  | 2027-04-29 | 2027-05-29 |  |  |  |  |  |  |  |  |  |  |
| SDR-2-CON-TS-ZA-2490 |  | Backfilling Chambers & Valves Installation | 21d | 2027-04-29 | 2027-05-29 | SDR-2-CON-TS-ZA-2480 |  |  |  |  | 1d | 0d | SIC- Cost [1334.15]; Plumbing Helper [74.71 h]; Labor [44.81 h]; Plumber [74.71 h]; Excavator [8 h]; Excavator Operator [65.65 h] | 15,579.31 | Z G |
|  | 3 | **TSE NETWORK IN ( PH2-G-MCF0 )** |  | 2026-08-13 | 2027-05-24 |  |  |  |  |  |  |  |  |  |  |
|  | 6 | **Pipes Work** |  | 2026-08-13 | 2027-05-11 |  |  |  |  |  |  |  |  |  |  |
|  | 1 | **Excavation** |  | 2026-08-13 | 2027-01-03 |  |  |  |  |  |  |  |  |  |  |
| SDR-2-CON-TS-ZA-2900 |  | Excavation for TSE HDPE Pipes 90 mm Section 2 | 20d | 2026-08-13 A | 2027-01-03 | SDR-2-CON-TS-ZA-3440 FF, SDR-2-CON-SL-ZA-2970 FF | 30% | 1d | 2026-12-10 | 2027-01-02 | 1d | 0d | SIC- Cost [6976.73]; Plumbing Helper [67.9 h]; Labor [51.21 h]; Plumber [67.9 h]; Excavator [12 h]; Excavator Operator [67.9 h] | 3,488.37 | Z G |
| SDR-2-CON-TS-ZA-3440 |  | Excavation for TSE HDPE Pipes 90 mm Section 1 | 21d | 2026-08-13 A | 2026-11-01 | SDR-2-CON-SE-ZA-2260, SDR-2-PRO-ST-E-1200 FF | 30% | 1d | 2026-11-16 | 2026-12-09 | 50d | 0d | SIC- Cost [6976.73]; Plumbing Helper [67.9 h]; Labor [51.21 h]; Plumber [67.9 h]; Excavator [12 h]; Excavator Operator [67.9 h] | 3,488.37 | Z G |

| ID | WBS | Activity | Duration | Start | Finish | Predecessors | Complete | Remaining | Planned start | Planned finish | Total float | Free float | Resources | Cost | ZONE G |
| --- | --- | --- | --- | --- | --- | --- | --- | --- | --- | --- | --- | --- | --- | --- | --- |
|  | 3 | **bedding Works** |  | 2027-01-16 | 2027-02-08 |  |  |  |  |  |  |  |  |  |  |
| SDR-2-CON-TS-ZA-2930 |  | Sand bedding for TSE HDPE Pipes 90 mm | 21d | 2027-01-16 | 2027-02-08 | SDR-2-CON-ST-ZA-4430 SS, SDR-2-CON-RW-ZG-2110, SDR-2-CON-SL-ZA-3130, SDR-2-CON-TS-ZA-2900 |  |  |  |  | 12d | 0d | SIC- Cost [6976.73]; Plumbing Helper [67.9 h]; Labor [51.21 h]; Plumber [67.9 h]; Excavator [5 h]; Excavator Operator [67.9 h] | 1,744.18 | Z G |
|  | 2 | **Pipes Laying** |  | 2027-02-09 | 2027-03-06 |  |  |  |  |  |  |  |  |  |  |
| SDR-2-CON-TS-ZA-2910 |  | Install TSE 90 mm HDPE Pipe | 21d | 2027-02-09 | 2027-03-06 | SDR-2-CON-ST-ZA-4350 FS+4d, SDR-2-CON-TS-ZA-2930 |  |  |  |  | 12d |  | SIC- Cost; Plumbing Helper [67.9 h]; Labor [67.9 h]; Plumber [67.9 h]; Excavator [12 h]; Excavator Operator [67.9 h] | 15,697.64 | Z G |
|  | 5 | **Testing** |  | 2027-03-25 | 2027-04-17 |  |  |  |  |  |  |  |  |  |  |
| SDR-2-CON-TS-ZA-2920 |  | Testing of TSE HDPE Pipe 90 mm. | 20d | 2027-03-25 | 2027-04-17 | SDR-2-CON-TS-ZA-2530, SDR-2-CON-TS-ZA-2910 |  |  |  |  | 0d |  | SIC- Cost [5232.55]; Plumbing Helper [76.43 h]; Labor [19.2 h]; Plumber [76.43 h]; Excavator [6 h]; Excavator Operator [95.54 h] | 3,488.37 | Z G |
|  | 4 | **Backfilling** |  | 2027-04-18 | 2027-05-11 |  |  |  |  |  |  |  |  |  |  |
| SDR-2-CON-TS-ZA-2940 |  | Backfilling of TSE HDPE Pipe 90 mm. | 21d | 2027-04-18 | 2027-05-11 | SDR-2-CON-TS-ZA-2920 |  |  |  |  | 0d |  | SIC- Cost [5232.55]; Plumbing Helper [152.86 h]; Labor [19.2 h]; Plumber [152.86 h]; Excavator [14.41 h]; Excavator Operator [110.45 h] | 6,976.73 | Z G |
|  | 3 | **Valve Chambers & Valves** |  | 2026-11-01 | 2027-05-24 |  |  |  |  |  |  |  |  |  |  |
|  | 3 | **Excavation** |  | 2026-11-01 | 2026-12-16 |  |  |  |  |  |  |  |  |  |  |
| SDR-2-CON-TS-ZA-3450 |  | Excavation for Valve Chambers Section 1 | 20d | 2026-11-01 | 2026-11-23 | SDR-2-CON-TS-ZA-3440 SS |  |  |  |  | 50d | 0d | SIC- Cost [43105.5]; Plumbing Helper [238.84 h]; Labor [44.81 h]; Plumber [238.84 h]; Excavator [12 h]; Excavator Operator [298.55 h] | 5,842.24 | Z G |
| SDR-2-CON-TS-ZA-2960 |  | Excavation for Valve Chambers Section 2 | 20d | 2026-11-24 | 2026-12-16 | SDR-2-CON-TS-ZA-3450 |  |  |  |  | 50d | 45d | SIC- Cost [43105.5]; Plumbing Helper [238.84 h]; Labor [44.81 h]; Plumber [238.84 h]; Excavator [12 h]; Excavator Operator [298.55 h] | 5,842.24 | Z G |
|  | 1 | **bedding Works** |  | 2027-02-08 | 2027-03-01 |  |  |  |  |  |  |  |  |  |  |
| SDR-2-CON-TS-ZA-2950 |  | Sand bedding for Valve Chambers | 18d | 2027-02-08 | 2027-03-01 | SDR-2-CON-ST-ZA-4430, SDR-2-CON-TS-ZA-2960 |  |  |  |  | 5d | 0d | SIC- Cost [9271.88]; Plumbing Helper [76.43 h]; Labor [51.21 h]; Plumber [76.43 h]; Excavator [5 h]; Excavator Operator [95.54 h] | 7,789.66 | Z G |
|  | 4 | **Install Chambers & Valves** |  | 2027-03-02 | 2027-03-30 |  |  |  |  |  |  |  |  |  |  |
| SDR-2-CON-TS-ZA-2970 |  | Valve Chambers & Valves Installation | 21d | 2027-03-02 | 2027-03-30 | SDR-2-CON-ST-ZA-4200 FS+3d, SDR-2-CON-TS-ZA-2960, SDR-2-CON-TS-ZA-2950 |  |  |  |  | 5d | 0d | SIC- Cost [13106.5]; Plumbing Helper [152.86 h]; Labor [44.81 h]; Plumber [152.86 h]; Excavator [12 h]; Excavator Operator [191.07 h] | 35,053.45 | Z G |
|  | 5 | **Testing** |  | 2027-03-31 | 2027-04-22 |  |  |  |  |  |  |  |  |  |  |
| SDR-2-CON-TS-ZA-2980 |  | Testing Chambers & Valves Installation | 20d | 2027-03-31 | 2027-04-22 | SDR-2-CON-TS-ZA-2970 |  |  |  |  | 5d | 0d | SIC- Cost [1806.63]; Plumbing Helper [76.43 h]; Labor [44.81 h]; Plumber [76.43 h]; Excavator [6 h]; Excavator Operator [95.54 h] | 7,789.66 | Z G |
|  | 6 | **Backfilling** |  | 2027-04-25 | 2027-05-24 |  |  |  |  |  |  |  |  |  |  |
| SDR-2-CON-TS-ZA-2990 |  | Backfilling Chambers & Valves Installation | 21d | 2027-04-25 | 2027-05-24 | SDR-2-CON-TS-ZA-2980 FS+1d |  |  |  |  | 5d | 4d | SIC- Cost [1334.15]; Plumbing Helper [171.96 h]; Labor [44.81 h]; Plumber [171.96 h]; Excavator [14.72 h]; Excavator Operator [144.42 h] | 15,579.31 | Z G |
|  | 4 | **TSE NETWORK IN ( PH2-G-MCG0 )** |  | 2026-08-13 | 2027-06-13 |  |  |  |  |  |  |  |  |  |  |
|  | 6 | **Pipes Work** |  | 2026-08-13 | 2027-02-13 |  |  |  |  |  |  |  |  |  |  |
|  | 1 | **Excavation** |  | 2026-08-13 | 2026-11-01 |  |  |  |  |  |  |  |  |  |  |
| SDR-2-CON-TS-ZA-3000 |  | Excavation for TSE HDPE Pipes 90 mm Section 2 | 20d | 2026-08-13 A | 2026-11-01 | SDR-2-CON-TS-ZA-3460 FF | 40% | 1d | 2026-12-23 | 2027-01-14 | 61d | 0d | SIC- Cost [6976.73]; Plumbing Helper [81.48 h]; Labor [51.21 h]; Plumber [81.48 h]; Excavator [12 h]; Excavator Operator [81.48 h] | 3,488.37 | Z G |
| SDR-2-CON-TS-ZA-3460 |  | Excavation for TSE HDPE Pipes 90 mm Section 1 | 20d | 2026-08-13 A | 2026-09-27 A | SDR-2-CON-SE-ZA-2360 | 100% |  | 2026-11-30 | 2026-12-22 |  |  | SIC- Cost [6976.73]; Plumbing Helper [81.48 h]; Labor [51.21 h]; Plumber [81.48 h]; Excavator [12 h]; Excavator Operator [81.48 h] | 3,488.37 | Z G |

| ID | WBS | Activity | Duration | Start | Finish | Predecessors | Complete | Remaining | Planned start | Planned finish | Total float | Free float | Resources | Cost | ZONE G |
| --- | --- | --- | --- | --- | --- | --- | --- | --- | --- | --- | --- | --- | --- | --- | --- |
|  | 3 | **bedding Works** |  | 2026-11-02 | 2026-11-25 |  |  |  |  |  |  |  |  |  |  |
| SDR-2-CON-TS-ZA-3030 |  | Sand bedding for TSE HDPE Pipes 90 mm | 21d | 2026-11-02 | 2026-11-25 | SDR-2-CON-RW-ZG-2110, SDR-2-CON-TS-ZA-3000 |  |  |  |  | 83d | 0d | SIC- Cost; Plumbing Helper [67.9 h]; Labor [51.21 h]; Plumber [67.9 h]; Excavator [12 h]; Excavator Operator [67.9 h] | 1,744.18 | Z G |
|  | 2 | **Pipes Laying** |  | 2026-11-26 | 2026-12-20 |  |  |  |  |  |  |  |  |  |  |
| SDR-2-CON-TS-ZA-3010 |  | Install TSE 90 mm HDPE Pipe | 21d | 2026-11-26 | 2026-12-20 | SDR-2-CON-TS-ZA-3030 |  |  |  |  | 83d | 0d | SIC- Cost [22674.4]; Plumbing Helper [81.48 h]; Labor [96.01 h]; Plumber [81.48 h]; Excavator [12 h]; Excavator Operator [81.48 h] | 15,697.64 | Z G |
|  | 5 | **Testing** |  | 2026-12-21 | 2027-01-04 |  |  |  |  |  |  |  |  |  |  |
| SDR-2-CON-TS-ZA-3020 |  | Testing of TSE HDPE Pipe 90 mm. | 13d | 2026-12-21 | 2027-01-04 | SDR-2-CON-SE-ZA-2340, SDR-2-CON-SE-ZA-2330 FS+5d, SDR-2-CON-TS-ZA-3010 |  |  |  |  | 83d | 13d | SIC- Cost [5232.55]; Plumbing Helper [57.32 h]; Labor [19.2 h]; Plumber [57.32 h]; Excavator [12 h]; Excavator Operator [71.65 h] | 3,488.37 | Z G |
|  | 4 | **Backfilling** |  | 2027-01-20 | 2027-02-13 |  |  |  |  |  |  |  |  |  |  |
| SDR-2-CON-TS-ZA-3040 |  | Backfilling of TSE HDPE Pipe 90 mm. | 21d | 2027-01-20 | 2027-02-13 | SDR-2-CON-SE-ZA-2440, SDR-2-CON-SE-ZA-2230, SDR-2-CON-SE-ZA-2140, SDR-2-CON-TS-ZA-3020 |  |  |  |  | 70d |  | SIC- Cost [5232.55]; Plumbing Helper [76.53 h]; Labor [19.2 h]; Plumber [76.53 h]; Excavator [8.26 h]; Excavator Operator [70.14 h] | 6,976.73 | Z G |
|  | 3 | **Valve Chambers & Valves** |  | 2026-11-01 | 2027-06-13 |  |  |  |  |  |  |  |  |  |  |
|  | 3 | **Excavation** |  | 2026-11-01 | 2026-12-16 |  |  |  |  |  |  |  |  |  |  |
| SDR-2-CON-TS-ZA-3470 |  | Excavation for Valve Chambers Section 1 | 20d | 2026-11-01 | 2026-11-23 | SDR-2-CON-TS-ZA-3460 SS |  |  |  |  | 72d | 0d | SIC- Cost [43105.5]; Plumbing Helper [191.07 h]; Labor [44.81 h]; Plumber [191.07 h]; Excavator [12 h]; Excavator Operator [238.84 h] | 5,842.24 | Z G |
| SDR-2-CON-TS-ZA-3060 |  | Excavation for Valve Chambers Section 2 | 20d | 2026-11-24 | 2026-12-16 | SDR-2-CON-TS-ZA-3470 |  |  |  |  | 72d | 45d | SIC- Cost [43105.5]; Plumbing Helper [191.07 h]; Labor [44.81 h]; Plumber [191.07 h]; Excavator [12 h]; Excavator Operator [238.84 h] | 5,842.24 | Z G |
|  | 1 | **bedding Works** |  | 2027-02-08 | 2027-03-04 |  |  |  |  |  |  |  |  |  |  |
| SDR-2-CON-TS-ZA-3050 |  | Sand bedding for Valve Chambers | 21d | 2027-02-08 | 2027-03-04 | SDR-2-CON-ST-ZA-4880, SDR-2-CON-ST-ZA-4580, SDR-2-CON-ST-ZA-4500, SDR-2-CON-ST-ZA-4430, SDR-2-CON-TS-ZA-3060 |  |  |  |  | 27d | 21d | SIC- Cost [9271.88]; Plumbing Helper [76.43 h]; Labor [51.21 h]; Plumber [76.43 h]; Excavator [12 h]; Excavator Operator [95.54 h] | 7,789.66 | Z G |
|  | 4 | **Install Chambers & Valves** |  | 2027-04-04 | 2027-04-27 |  |  |  |  |  |  |  |  |  |  |
| SDR-2-CON-TS-ZA-3070 |  | Valve Chambers & Valves Installation | 21d | 2027-04-04 | 2027-04-27 | SDR-2-CON-ST-ZA-3350, SDR-2-CON-TS-ZA-3060, SDR-2-CON-TS-ZA-3050 |  |  |  |  | 6d | 0d | SIC- Cost [13106.5]; Plumbing Helper [114.64 h]; Labor [44.81 h]; Plumber [114.64 h]; Excavator [12 h]; Excavator Operator [143.3 h] | 35,053.45 | Z G |
|  | 5 | **Testing** |  | 2027-04-21 | 2027-05-12 |  |  |  |  |  |  |  |  |  |  |
| SDR-2-CON-TS-ZA-3080 |  | Testing Chambers & Valves Installation | 19d | 2027-04-21 | 2027-05-12 | SDR-2-CON-SE-ZA-2030, SDR-2-CON-ST-ZA-5480, SDR-2-CON-TS-ZA-3070 SS+15d |  |  |  |  | 6d | 0d | SIC- Cost [1806.63]; Plumbing Helper [76.43 h]; Labor [44.81 h]; Plumber [76.43 h]; Excavator [6 h]; Excavator Operator [95.54 h] | 7,789.66 | Z G |
|  | 6 | **Backfilling** |  | 2027-05-15 | 2027-06-13 |  |  |  |  |  |  |  |  |  |  |
| SDR-2-CON-TS-ZA-3090 |  | Backfilling Chambers & Valves Installation | 21d | 2027-05-15 | 2027-06-13 | SDR-2-CON-TS-ZA-3080 FS+1d |  |  |  |  | 6d | 5d | SIC- Cost [1334.15]; Plumbing Helper [40.13 h]; Labor [44.81 h]; Plumber [40.13 h]; Excavator [16.2 h]; Excavator Operator [120.53 h] | 15,579.31 | Z G |
|  | 5 | **TSE NETWORK IN ( PH2-G-MCZ0 )** |  | 2026-08-13 | 2027-06-19 |  |  |  |  |  |  |  |  |  |  |
|  | 6 | **Pipes Work** |  | 2026-08-13 | 2027-06-19 |  |  |  |  |  |  |  |  |  |  |
|  | 1 | **Excavation** |  | 2026-08-13 | 2026-11-01 |  |  |  |  |  |  |  |  |  |  |
| SDR-2-CON-TS-ZA-2500 |  | Excavation for TSE HDPE Pipes 125 mm Section 2 | 20d | 2026-08-13 A | 2026-11-01 | SDR-2-CON-RW-ZG-2540, SDR-2-CON-TS-ZA-3480 FF | 40% | 1d | 2026-12-24 | 2027-01-16 | 60d | 0d | SIC- Cost [31428.1]; Plumbing Helper [67.9 h]; Labor [51.21 h]; Plumber [67.9 h]; Excavator [10.6 h]; Excavator Operator [67.9 h] | 15,714.04 | Z G |
| SDR-2-CON-TS-ZA-3480 |  | Excavation for TSE HDPE Pipes 125 mm Section 1 | 21d | 2026-08-13 A | 2026-11-01 | SDR-2-CON-SE-ZA-2360 | 40% | 1d | 2026-11-30 | 2026-12-23 | 60d | 0d | SIC- Cost [31428.1]; Plumbing Helper [67.9 h]; Labor [51.21 h]; Plumber [67.9 h]; Excavator [20 h]; Excavator Operator [67.9 h] | 15,714.04 | Z G |

| ID | WBS | Activity | Duration | Start | Finish | Predecessors | Complete | Remaining | Planned start | Planned finish | Total float | Free float | Resources | Cost | ZONE G | ZONE A |
| --- | --- | --- | --- | --- | --- | --- | --- | --- | --- | --- | --- | --- | --- | --- | --- | --- |
|  | 3 | **bedding Works** |  | 2027-02-24 | 2027-03-24 |  |  |  |  |  |  |  |  |  |  |  |
| SDR-2-CON-TS-ZA-2530 |  | Sand bedding for TSE HDPE Pipes 125 mm | 21d | 2027-02-24 | 2027-03-24 | SDR-2-CON-ST-ZA-4880, SDR-2-CON-ST-ZA-4580, SDR-2-CON-ST-ZA-4050 FS+2d, SDR-2-CON-ST-ZA-3760, SDR-2-CON-ST-ZA-1140, SDR-2-CON-RW-ZG-2110, SDR-2-CON-TS-ZA-2500 |  |  |  |  | 0d |  | SIC- Cost [31428.1]; Plumbing Helper [95.54 h]; Labor [51.21 h]; Plumber [95.54 h]; Excavator [12 h]; Excavator Operator [119.42 h] | 7,857.01 | Z G |  |
|  | 2 | **Pipes Laying** |  | 2027-03-25 | 2027-04-18 |  |  |  |  |  |  |  |  |  |  |  |
| SDR-2-CON-TS-ZA-2510 |  | Install TSE 125 mm HDPE Pipe | 21d | 2027-03-25 | 2027-04-18 | SDR-2-CON-TS-ZA-2500, SDR-2-CON-TS-ZA-2530 |  |  |  |  | 12d | 0d | SIC- Cost [102141]; Plumbing Helper [67.9 h]; Labor [96.01 h]; Plumber [81.48 h]; Excavator [13.66 h]; Excavator Operator [81.48 h] | 70,713.15 | Z G |  |
|  | 5 | **Testing** |  | 2027-04-19 | 2027-04-27 |  |  |  |  |  |  |  |  |  |  |  |
| SDR-2-CON-TS-ZA-2520 |  | Testing of TSE HDPE Pipe 125 mm. | 8d | 2027-04-19 | 2027-04-27 | SDR-2-CON-TS-ZA-2840, SDR-2-CON-ST-ZA-7040, SDR-2-CON-ST-ZA-7030, SDR-2-CON-ST-ZA-7020, SDR-2-CON-ST-ZA-7010, SDR-2-CON-ST-ZA-6940, SDR-2-CON-TS-ZA-2510 |  |  |  |  | 12d |  | SIC- Cost [23571]; Plumbing Helper [76.43 h]; Labor [25.6 h]; Plumber [76.43 h]; Excavator [10 h]; Excavator Operator [95.54 h] | 15,714.03 | Z G |  |
|  | 4 | **Backfilling** |  | 2027-05-30 | 2027-06-19 |  |  |  |  |  |  |  |  |  |  |  |
| SDR-2-CON-TS-ZA-2540 |  | Backfilling of TSE HDPE Pipe 125 mm. | 18d | 2027-05-30 | 2027-06-19 | SDR-2-TC-CW-1010, SDR-2-CON-PW-ZA-2320, SDR-2-CON-PW-ZA-2350, SDR-2-CON-PW-ZA-1070 SS, SDR-2-CON-PW-ZA-2210, SDR-2-CON-TS-ZA-2590, SDR-2-CON-TS-ZA-3040, SDR-2-CON-TS-ZA-2990, SDR-2-CON-TS-ZA-2940, SDR-2-CON-TS-ZA-2490, SDR-2-CON-TS-ZA-2440, SDR-2-CON-TS-ZA-2360, SDR-2-CON-TS-ZA-2390, SDR-2-CON-TS-ZA-3190, SDR-2-CON-TS-ZA-3140, SDR-2-CON-TS-ZA-2190, SDR-2-CON-TS-ZA-1990, SDR-2-CON-TS-ZA-2140, SDR-2-CON-TS-ZA-1970, SDR-2-CON-TS-ZA-2890, SDR-2-CON-TS-ZA-2840, SDR-2-CON-TS-ZA-2740, SDR-2-CON-TS-ZA-2690 SS, SDR-2-CON-TS-ZA-2090, SDR-2-CON-TS-ZA-1950 SS, SDR-2-CON-TS-ZA-2040, SDR-2-CON-TS-ZA-1930 SS, SDR-2-CON-TS-ZA-1930 FF, SDR-2-CON-TS-ZA-2260, SDR-2-CON-TS-ZA-2290, SDR-2-CON-TS-ZA-1070, SDR-2-CON-TS-ZA-1910 SS, SDR-2-CON-ST-ZA-5070 SS, SDR-2-CON-ST-ZA-4920 SS, SDR-2-CON-ST-ZA-4770, SDR-2-CON-ST-ZA-4620, SDR-2-CON-ST-ZA-4470, SDR-2-CON-ST-ZA-4320, SDR-2-CON-ST-ZA-4020, SDR-2-CON-RW-ZG-2210, SDR-2-CON-RW-ZG-2060, SDR-2-CON-RW-ZG-1910, SDR-2-CON-RW-ZG-1760, SDR-2-CON-RW-ZG-1610, SDR-2-CON-RW-ZG-1460, SDR-2-CON-RW-ZG-1310, SDR-2-CON-RW-ZG-1160 SS, SDR-2-CON-RW-ZA-2830, SDR-2-CON-RW-ZA-2690, SDR-2-CON-RW-ZA-2550, SDR-2-CON-RW-ZA-2410, SDR-2-CON-RW-ZA-2270, SDR-2-CON-RW-ZA-2130, SDR-2-CON-RW-ZA-1990, SDR-2-CON-RW-ZA-1850, SDR-2-CON-RW-ZA-1710, SDR-2-CON-RW-ZA-1570, SDR-2-CON-RW-ZA-1290, SDR-2-CON-RW-ZA-1150 SS, SDR-2-CON-TS-ZA-2520 |  |  |  |  | 1d | 0d | SIC- Cost [23571]; Plumbing Helper [143.3 h]; Labor [25.6 h]; Plumber [143.3 h]; Excavator [14.4 h]; Excavator Operator [179.13 h] | 31,428.07 | Z G |  |
|  | 3 | **Valve Chambers & Valves** |  | 2026-11-01 | 2027-05-04 |  |  |  |  |  |  |  |  |  |  |  |
|  | 3 | **Excavation** |  | 2026-11-01 | 2026-12-16 |  |  |  |  |  |  |  |  |  |  |  |
| SDR-2-CON-TS-ZA-3490 |  | Excavation for Valve Chambers Section 1 | 20d | 2026-11-01 | 2026-11-23 | SDR-2-CON-TS-ZA-3480 SS |  |  |  |  | 62d | 0d | SIC- Cost [43105.5]; Plumbing Helper [238.84 h]; Labor [44.81 h]; Plumber [238.84 h]; Excavator [12 h]; Excavator Operator [298.55 h] | 5,842.24 | Z G |  |
| SDR-2-CON-TS-ZA-2560 |  | Excavation for Valve Chambers Section 2 | 20d | 2026-11-24 | 2026-12-16 | SDR-2-CON-TS-ZA-3490 |  |  |  |  | 62d | 45d | SIC- Cost [43105.5]; Plumbing Helper [238.84 h]; Labor [44.81 h]; Plumber [238.84 h]; Excavator [12 h]; Excavator Operator [298.55 h] | 5,842.24 | Z G |  |
|  | 1 | **bedding Works** |  | 2027-02-08 | 2027-03-04 |  |  |  |  |  |  |  |  |  |  |  |
| SDR-2-CON-TS-ZA-2550 |  | Sand bedding for Valve Chambers | 21d | 2027-02-08 | 2027-03-04 | SDR-2-CON-ST-ZA-5030, SDR-2-CON-ST-ZA-4950, SDR-2-CON-ST-ZA-4880, SDR-2-CON-ST-ZA-4800, SDR-2-CON-ST-ZA-4730, SDR-2-CON-TS-ZA-2560 |  |  |  |  | 17d | 0d | SIC- Cost [9271.88]; Plumbing Helper [76.43 h]; Labor [51.21 h]; Plumber [76.43 h]; Excavator [10.74 h]; Excavator Operator [95.54 h] | 7,789.66 | Z G |  |
|  | 4 | **Install Chambers & Valves** |  | 2027-03-06 | 2027-04-03 |  |  |  |  |  |  |  |  |  |  |  |
| SDR-2-CON-TS-ZA-2570 |  | Valve Chambers & Valves Installation | 21d | 2027-03-06 | 2027-04-03 | SDR-2-CON-TS-ZA-2560, SDR-2-CON-TS-ZA-2550 |  |  |  |  | 17d | 11d | SIC- Cost [13106.5]; Plumbing Helper [133.75 h]; Labor [44.81 h]; Plumber [133.75 h]; Excavator [12 h]; Excavator Operator [167.19 h] | 35,053.45 | Z G |  |
|  | 5 | **Testing** |  | 2027-04-04 | 2027-04-20 |  |  |  |  |  |  |  |  |  |  |  |
| SDR-2-CON-TS-ZA-2580 |  | Testing Chambers & Valves Installation | 15d | 2027-04-04 | 2027-04-20 | SDR-2-CON-ST-ZA-3350, SDR-2-CON-SE-ZA-1930, SDR-2-CON-SE-ZA-1430, SDR-2-CON-TS-ZA-2570 SS+10d |  |  |  |  | 6d | 0d | SIC- Cost [1806.63]; Plumbing Helper [66.88 h]; Labor [44.81 h]; Plumber [66.88 h]; Excavator [6 h]; Excavator Operator [83.59 h] | 7,789.66 | Z G |  |
|  | 6 | **Backfilling** |  | 2027-04-15 | 2027-05-04 |  |  |  |  |  |  |  |  |  |  |  |
| SDR-2-CON-TS-ZA-2590 |  | Backfilling Chambers & Valves Installation | 17d | 2027-04-15 | 2027-05-04 | SDR-2-CON-SE-ZA-2040, SDR-2-CON-TS-ZA-2580 SS+10d |  |  |  |  | 6d |  | SIC- Cost [1334.15]; Plumbing Helper [49.13 h]; Labor [44.81 h]; Plumber [49.13 h]; Excavator [8 h]; Excavator Operator [70.14 h] | 15,579.31 | Z G |  |
|  | PW | **Portable Water** |  | 2026-05-06 | 2027-06-17 |  |  |  |  |  |  |  |  |  |  |  |
|  | ZA | **ZONE A** |  | 2026-08-13 | 2027-06-17 |  |  |  |  |  |  |  |  |  |  |  |
|  | 1 | **PORTABLE WATER IN ( PH2-COL-MC10 )** |  | 2026-08-13 | 2027-05-31 |  |  |  |  |  |  |  |  |  |  |  |
|  | 7 | **Pipes Work** |  | 2026-08-13 | 2027-05-01 |  |  |  |  |  |  |  |  |  |  |  |
|  | 1 | **Excavation** |  | 2026-08-13 | 2027-02-07 |  |  |  |  |  |  |  |  |  |  |  |
| SDR-2-CON-PW-ZA-3710 |  | Excavation for PW HDPE Pipes 315 mm Section 1 | 21d | 2026-08-13 A | 2026-12-12 | SDR-2-CON-RW-ZG-2340 FF, SDR-2-CON-TS-ZA-1000 FF | 75% | 1d | 2026-12-09 | 2027-01-02 | 17d | 0d | SIC- Cost; Plumbing Helper [67.9 h]; Labor [38.41 h]; Plumber [67.9 h]; Excavator [12.88 h]; Excavator Operator [67.9 h]; Un-Skilled Labor [135.79 h]; Skilled Labor [135.79 h] | 41,173.52 |  | Z A |
| SDR-2-CON-PW-ZA-1000 |  | Excavation for PW HDPE Pipes 315 mm Section 2 | 21d | 2026-08-20 A | 2027-02-07 | SDR-2-CON-RW-ZG-1360, SDR-2-CON-PW-ZA-3710 FF, SDR-2-CON-RW-ZA-1620 FF, SDR-2-CON-RW-ZG-1660 FF, SDR-2-CON-ST-ZA-4730 FF, SDR-2-CON-ST-ZA-4650 FF, SDR-2-CON-SL-ZA-3490 FF | 40% | 1d | 2027-01-07 | 2027-01-31 | 51d | 38d | SIC- Cost; Plumbing Helper [67.9 h]; Labor [38.41 h]; Plumber [67.9 h]; Excavator [7.16 h]; Excavator Operator [67.9 h]; Un-Skilled Labor [135.79 h]; Skilled Labor [135.79 h] | 41,173.52 |  | Z A |

| ID | WBS | Activity | Duration | Start | Finish | Predecessors | Complete | Remaining | Planned start | Planned finish | Total float | Free float | Resources | Cost | ZONE A |
| --- | --- | --- | --- | --- | --- | --- | --- | --- | --- | --- | --- | --- | --- | --- | --- |
|  | 8 | **bedding Works** |  | 2026-08-25 | 2027-03-29 |  |  |  |  |  |  |  |  |  |  |
| SDR-2-CON-PW-ZA-2200 |  | Sand bedding for PW HDPE Pipes 315 mm | 19d | 2026-08-25 A | 2027-03-29 | SDR-2-CON-PW-ZA-1000 FF, SDR-2-CON-CC-ZA-1820 FF | 10% | 1d | 2027-02-01 | 2027-02-23 | 13d | 4d | SIC- Cost [82341.5]; Plumbing Helper [114.64 h]; Labor [38.41 h]; Plumber [114.64 h]; Excavator [6 h]; Excavator Operator [143.3 h]; Un-Skilled Labor [143.3 h]; Skilled Labor [143.3 h] | 20,586.76 | Z A |
|  | 2 | **Pipes Laying** |  | 2026-08-27 | 2027-04-03 |  |  |  |  |  |  |  |  |  |  |
| SDR-2-CON-PW-ZA-1010 |  | Install PW 315 mm HDPE Pipe | 18d | 2026-08-27 A | 2027-04-03 | SDR-2-CON-PW-ZA-2200 FF, SDR-2-CON-ST-ZA-3350 FF, SDR-2-CON-SE-ZA-1440 FF | 30% | 1d | 2027-02-24 | 2027-03-21 | 9d | 0d | SIC- Cost [267610]; Plumbing Helper [152.86 h]; Labor [76.81 h]; Plumber [152.86 h]; Excavator [12 h]; Excavator Operator [191.07 h]; Un-Skilled Labor [191.07 h]; Skilled Labor [191.07 h] | 185,280.81 | Z A |
|  | 5 | **Testing** |  | 2027-04-04 | 2027-04-11 |  |  |  |  |  |  |  |  |  |  |
| SDR-2-CON-PW-ZA-1080 |  | Testing of PW HDPE Pipe 315 mm. | 7d | 2027-04-04 | 2027-04-11 | SDR-2-CON-SE-ZA-2040 SS, SDR-2-CON-SE-ZA-1940, SDR-2-CON-SE-ZA-1830, SDR-2-CON-SE-ZA-1630, SDR-2-CON-SE-ZA-1540, SDR-2-CON-SE-ZA-1530, SDR-2-CON-PW-ZA-1010 |  |  |  |  | 9d | 0d | SIC- Cost [61756.1]; Plumbing Helper [76.43 h]; Labor [25.6 h]; Plumber [76.43 h]; Excavator [12 h]; Excavator Operator [95.54 h]; Un-Skilled Labor [95.54 h]; Skilled Labor [95.54 h] | 41,173.51 | Z A |
|  | 9 | **Backfilling** |  | 2027-04-12 | 2027-05-01 |  |  |  |  |  |  |  |  |  |  |
| SDR-2-CON-PW-ZA-2210 |  | Backfilling of PW HDPE Pipe 315 mm. | 17d | 2027-04-12 | 2027-05-01 | SDR-2-CON-SE-ZA-1840, SDR-2-CON-SE-ZA-1740, SDR-2-CON-SE-ZA-1730, SDR-2-CON-PW-ZA-1080 |  |  |  |  | 9d |  | SIC- Cost [61756.1]; Plumbing Helper [133.75 h]; Labor [25.6 h]; Plumber [48 h]; Excavator [6 h]; Excavator Operator [66.41 h]; Un-Skilled Labor [167.19 h]; Skilled Labor [76.49 h] | 82,347.03 | Z A |
|  | 3 | **Valve Chambers & Valves & Fire Hydrant** |  | 2026-12-12 | 2027-05-31 |  |  |  |  |  |  |  |  |  |  |
|  | 3 | **Excavation** |  | 2026-12-12 | 2027-01-26 |  |  |  |  |  |  |  |  |  |  |
| SDR-2-CON-PW-ZA-3720 |  | Excavation for Valve Chambers Section 1 | 20d | 2026-12-12 | 2027-01-03 | SDR-2-CON-PW-ZA-3710 SS, SDR-2-CON-RW-ZG-2420, SDR-2-CON-RW-ZG-1390 |  |  |  |  | 49d | 0d | SIC- Cost [56482.5]; Plumbing Helper [229.29 h]; Labor [25.6 h]; Plumber [229.29 h]; Excavator [14.1 h]; Excavator Operator [286.61 h]; Un-Skilled Labor [286.61 h]; Skilled Labor [286.61 h] | 15,062.79 | Z A |
| SDR-2-CON-PW-ZA-1040 |  | Excavation for Valve Chambers Section 2 | 20d | 2027-01-04 | 2027-01-26 | SDR-2-CON-PW-ZA-3720 |  |  |  |  | 49d | 0d | SIC- Cost [56482.5]; Plumbing Helper [229.29 h]; Labor [25.6 h]; Plumber [229.29 h]; Excavator [7.57 h]; Excavator Operator [286.61 h]; Un-Skilled Labor [286.61 h]; Skilled Labor [286.61 h] | 15,062.79 | Z A |
|  | 1 | **bedding Works** |  | 2027-01-27 | 2027-02-14 |  |  |  |  |  |  |  |  |  |  |
| SDR-2-CON-PW-ZA-1020 |  | Sand bedding for Valve Chambers | 16d | 2027-01-27 | 2027-02-14 | SDR-2-CON-PW-ZA-1040 |  |  |  |  | 49d | 0d | SIC- Cost [23901.1]; Plumbing Helper [76.43 h]; Labor [25.6 h]; Plumber [76.43 h]; Excavator [6 h]; Excavator Operator [95.54 h]; Un-Skilled Labor [95.54 h]; Skilled Labor [95.54 h] | 20,083.72 | Z A |
|  | 4 | **Install Chambers & Valves & Fire Hydrant** |  | 2027-02-15 | 2027-03-15 |  |  |  |  |  |  |  |  |  |  |
| SDR-2-CON-PW-ZA-1050 |  | Install Chambers & Valves | 20d | 2027-02-15 | 2027-03-15 | SDR-2-CON-PW-ZA-1020 |  |  |  |  | 49d | 36d | SIC- Cost [18906.2]; Plumbing Helper [191.07 h]; Labor [25.6 h]; Plumber [191.07 h]; Excavator [12 h]; Excavator Operator [238.84 h]; Un-Skilled Labor [238.84 h]; Skilled Labor [238.84 h] | 90,376.7 | Z A |
|  | 2 | **Testing** |  | 2027-04-27 | 2027-05-05 |  |  |  |  |  |  |  |  |  |  |
| SDR-2-CON-PW-ZA-1030 |  | Testing for Chambers & Valves | 8d | 2027-04-27 | 2027-05-05 | SDR-2-CON-SE-ZA-2040 SS, SDR-2-CON-ST-ZA-6220, SDR-2-CON-PW-ZA-1050 |  |  |  |  | 17d | 0d | SIC- Cost [23901.1]; Plumbing Helper [76.43 h]; Labor [25.6 h]; Plumber [76.43 h]; Excavator [12 h]; Excavator Operator [95.54 h]; Un-Skilled Labor [95.54 h]; Skilled Labor [95.54 h] | 20,083.72 | Z A |
|  | 6 | **Backfilling** |  | 2027-05-02 | 2027-05-31 |  |  |  |  |  |  |  |  |  |  |
| SDR-2-CON-PW-ZA-1070 |  | Backfilling for Chambers & Valves | 21d | 2027-05-02 | 2027-05-31 | SDR-2-CON-RW-ZG-1760 SS+2d, SDR-2-CON-PW-ZA-1030 SS+4d |  |  |  |  | 17d | 15d | SIC- Cost [1798.57]; Plumbing Helper [61.97 h]; Labor [25.6 h]; Plumber [61.97 h]; Excavator [265.6 h]; Excavator Operator [90.29 h]; Un-Skilled Labor [100.37 h]; Skilled Labor [80.22 h] | 40,167.42 | Z A |
|  | 2 | **PORTABLE WATER IN ( PH2-COL-MC20 )** |  | 2026-08-16 | 2027-04-25 |  |  |  |  |  |  |  |  |  |  |
|  | 7 | **Pipes Work** |  | 2026-08-16 | 2027-04-25 |  |  |  |  |  |  |  |  |  |  |
|  | 1 | **Excavation** |  | 2026-08-16 | 2026-09-28 |  |  |  |  |  |  |  |  |  |  |
| SDR-2-CON-PW-ZA-2260 |  | Excavation for PW HDPE Pipes 315 mm Section 2 | 21d | 2026-08-16 A | 2026-09-28 A | SDR-2-CON-PW-ZA-3730 FF, SDR-2-CON-RW-ZG-1510, SDR-2-CON-RW-ZG-1660 FF, SDR-2-CON-ST-ZA-4130 FF, SDR-2-CON-SL-ZA-3460 FF | 100% |  | 2027-01-12 | 2027-02-04 |  |  | SIC- Cost; Plumbing Helper [67.9 h]; Labor [38.41 h]; Plumber [67.9 h]; Excavator [8.78 h]; Excavator Operator [67.9 h]; Un-Skilled Labor [67.9 h]; Skilled Labor [67.9 h] | 41,173.52 | Z A |
| SDR-2-CON-PW-ZA-3730 |  | Excavation for PW HDPE Pipes 315 mm Section 1 | 21d | 2026-08-16 A | 2026-09-14 A | SDR-2-CON-PW-ZA-3710 FF | 100% |  | 2026-12-15 | 2027-01-07 |  |  | SIC- Cost; Plumbing Helper [67.9 h]; Labor [38.41 h]; Plumber [67.9 h]; Excavator [13.81 h]; Excavator Operator [67.9 h]; Un-Skilled Labor [67.9 h]; Skilled Labor [67.9 h] | 41,173.52 | Z A |

| ID | WBS | Activity | Duration | Start | Finish | Predecessors | Complete | Remaining | Planned start | Planned finish | Total float | Free float | Resources | Cost | ZONE A |
| --- | --- | --- | --- | --- | --- | --- | --- | --- | --- | --- | --- | --- | --- | --- | --- |
|  | 8 | **bedding Works** |  | 2026-08-20 | 2027-02-02 |  |  |  |  |  |  |  |  |  |  |
| SDR-2-CON-PW-ZA-2340 |  | Sand bedding for PW HDPE Pipes 315 mm | 15d | 2026-08-20 A | 2027-02-02 | SDR-2-CON-PW-ZA-2260 FF, SDR-2-CON-RW-ZA-1050 | 35% | 1d | 2027-02-06 | 2027-02-23 | 79d | 0d | SIC- Cost [82341.5]; Plumbing Helper [114.64 h]; Labor [38.41 h]; Plumber [114.64 h]; Excavator [10 h]; Excavator Operator [143.3 h]; Un-Skilled Labor [143.3 h]; Skilled Labor [143.3 h] | 20,586.76 | Z A |
|  | 2 | **Pipes Laying** |  | 2026-08-27 | 2027-02-02 |  |  |  |  |  |  |  |  |  |  |
| SDR-2-CON-PW-ZA-2270 |  | Install PW 315 mm HDPE Pipe | 15d | 2026-08-27 A | 2027-02-02 | SDR-2-CON-PW-ZA-2340 FF | 50% | 1d | 2027-02-24 | 2027-03-17 | 79d | 19d | SIC- Cost [267610]; Plumbing Helper [143.3 h]; Labor [76.81 h]; Plumber [143.3 h]; Excavator [27.25 h]; Excavator Operator [179.13 h]; Un-Skilled Labor [179.13 h]; Skilled Labor [179.13 h] | 185,280.81 | Z A |
|  | 5 | **Testing** |  | 2026-09-01 | 2027-02-25 |  |  |  |  |  |  |  |  |  |  |
| SDR-2-CON-PW-ZA-2330 |  | Testing of PW HDPE Pipe 315 mm. | 8d | 2026-09-01 A | 2027-02-25 | SDR-2-CON-PW-ZA-2270 FF, SDR-2-CON-SE-ZA-1940 FF, SDR-2-CON-SE-ZA-1930 FF | 10% | 1d | 2027-03-18 | 2027-03-27 | 60d | 46d | SIC- Cost [61756.1]; Plumbing Helper [76.43 h]; Labor [25.6 h]; Plumber [76.43 h]; Excavator [6 h]; Excavator Operator [95.54 h]; Un-Skilled Labor [95.54 h]; Skilled Labor [95.54 h] | 41,173.51 | Z A |
|  | 9 | **Backfilling** |  | 2026-09-03 | 2027-04-25 |  |  |  |  |  |  |  |  |  |  |
| SDR-2-CON-PW-ZA-2350 |  | Backfilling of PW HDPE Pipe 315 mm. | 17d | 2026-09-03 A | 2027-04-25 | SDR-2-CON-PW-ZA-2330 FF, SDR-2-CON-RW-ZG-1610 FF, SDR-2-CON-RW-ZG-1460 FF | 10% | 2.2d | 2027-03-28 | 2027-04-15 | 14d |  | SIC- Cost [61756.1]; Plumbing Helper [58.12 h]; Labor [25.6 h]; Plumber [58.12 h]; Excavator [8 h]; Excavator Operator [70.14 h]; Un-Skilled Labor [70.14 h]; Skilled Labor [80.22 h] | 82,347.03 | Z A |
|  | 3 | **Valve Chambers & Valves & Fire Hydrant** |  | 2026-12-13 | 2027-04-11 |  |  |  |  |  |  |  |  |  |  |
|  | 3 | **Excavation** |  | 2026-12-13 | 2027-01-30 |  |  |  |  |  |  |  |  |  |  |
| SDR-2-CON-PW-ZA-3740 |  | Excavation for Valve Chambers Section 1 | 21d | 2026-12-13 | 2027-01-05 | SDR-2-CON-PW-ZA-3730 SS, SDR-2-CON-RW-ZG-1660, SDR-2-CON-RW-ZG-1510 |  |  |  |  | 37d | 0d | SIC- Cost [56482.5]; Plumbing Helper [219.73 h]; Labor [25.6 h]; Plumber [219.73 h]; Excavator [18 h]; Excavator Operator [274.67 h]; Un-Skilled Labor [274.67 h]; Skilled Labor [274.67 h] | 15,062.79 | Z A |
| SDR-2-CON-PW-ZA-2300 |  | Excavation for Valve Chambers Section 2 | 21d | 2027-01-06 | 2027-01-30 | SDR-2-CON-PW-ZA-3740 |  |  |  |  | 37d | 0d | SIC- Cost [56482.5]; Plumbing Helper [219.73 h]; Labor [25.6 h]; Plumber [219.73 h]; Excavator [18 h]; Excavator Operator [274.67 h]; Un-Skilled Labor [274.67 h]; Skilled Labor [274.67 h] | 15,062.79 | Z A |
|  | 1 | **bedding Works** |  | 2027-01-31 | 2027-02-16 |  |  |  |  |  |  |  |  |  |  |
| SDR-2-CON-PW-ZA-2280 |  | Sand bedding for Valve Chambers | 15d | 2027-01-31 | 2027-02-16 | SDR-2-CON-SL-ZA-3410, SDR-2-CON-PW-ZA-2300 |  |  |  |  | 37d | 0d | SIC- Cost [23901.1]; Plumbing Helper [95.54 h]; Labor [25.6 h]; Plumber [95.54 h]; Excavator [6 h]; Excavator Operator [119.42 h]; Un-Skilled Labor [119.42 h]; Skilled Labor [119.42 h] | 20,083.72 | Z A |
|  | 4 | **Install Chambers & Valves & Fire Hydrant** |  | 2027-02-17 | 2027-03-07 |  |  |  |  |  |  |  |  |  |  |
| SDR-2-CON-PW-ZA-2310 |  | Install Chambers & Valves | 15d | 2027-02-17 | 2027-03-07 | SDR-2-CON-PW-ZA-2280 |  |  |  |  | 37d | 0d | SIC- Cost [18906.2]; Plumbing Helper [152.86 h]; Labor [25.6 h]; Plumber [152.86 h]; Excavator [12 h]; Excavator Operator [191.07 h]; Un-Skilled Labor [191.07 h]; Skilled Labor [191.07 h] | 90,376.7 | Z A |
|  | 2 | **Testing** |  | 2027-03-08 | 2027-03-20 |  |  |  |  |  |  |  |  |  |  |
| SDR-2-CON-PW-ZA-2290 |  | Testing for Chambers & Valves | 7d | 2027-03-08 | 2027-03-20 | SDR-2-CON-PW-ZA-2310 |  |  |  |  | 37d | 0d | SIC- Cost [23901.1]; Plumbing Helper [76.43 h]; Labor [25.6 h]; Plumber [76.43 h]; Excavator [14 h]; Excavator Operator [95.54 h]; Un-Skilled Labor [95.54 h]; Skilled Labor [95.54 h] | 20,083.72 | Z A |
|  | 6 | **Backfilling** |  | 2027-03-21 | 2027-04-11 |  |  |  |  |  |  |  |  |  |  |
| SDR-2-CON-PW-ZA-2320 |  | Backfilling for Chambers & Valves | 19d | 2027-03-21 | 2027-04-11 | SDR-2-CON-PW-ZA-2290 |  |  |  |  | 37d | 31d | SIC- Cost [1798.57]; Plumbing Helper [52.2 h]; Labor [25.6 h]; Plumber [52.2 h]; Excavator [6 h]; Excavator Operator [62.68 h]; Un-Skilled Labor [62.68 h]; Skilled Labor [62.68 h] | 40,167.42 | Z A |
|  | 11 | **PORTABLE WATER IN ( PH2-A-MCA0 )** |  | 2026-12-13 | 2027-05-31 |  |  |  |  |  |  |  |  |  |  |
|  | 7 | **Pipes Work** |  | 2026-12-13 | 2027-05-31 |  |  |  |  |  |  |  |  |  |  |
|  | 1 | **Excavation** |  | 2026-12-13 | 2027-03-06 |  |  |  |  |  |  |  |  |  |  |
| SDR-2-CON-PW-ZA-3750 |  | Excavation for PW HDPE Pipe 225 mm. Section 1 | 21d | 2026-12-13 | 2027-01-05 | SDR-2-CON-PW-ZA-3730 SS |  |  |  |  | 17d | 0d | SIC- Cost; Plumbing Helper [67.9 h]; Labor [38.41 h]; Plumber [67.9 h]; Excavator [17.38 h]; Excavator Operator [67.9 h]; Un-Skilled Labor [67.9 h]; Skilled Labor [67.9 h] | 19,451.69 | Z A |
| SDR-2-CON-PW-ZA-1200 |  | Excavation for PW HDPE Pipe 225 mm. Section 2 | 21d | 2027-02-09 | 2027-03-06 | SDR-2-CON-PW-ZA-3750, SDR-2-CON-ST-ZA-5100 FS+2d |  |  |  |  | 8d | 0d | SIC- Cost; Plumbing Helper [67.9 h]; Labor [38.41 h]; Plumber [67.9 h]; Excavator [17.38 h]; Excavator Operator [67.9 h]; Un-Skilled Labor [67.9 h]; Skilled Labor [67.9 h] | 19,451.27 | Z A |

| ID | WBS | Activity | Duration | Start | Finish | Predecessors | Total float | Free float | Resources | Cost | ZONE A |
| --- | --- | --- | --- | --- | --- | --- | --- | --- | --- | --- | --- |
|  | 3 | **bedding Works** |  | 2027-03-07 | 2027-04-03 |  |  |  |  |  |  |
| SDR-2-CON-PW-ZA-2220 |  | Sand bedding for PW HDPE Pipe 225 mm. | 20d | 2027-03-07 | 2027-04-03 | SDR-2-CON-PW-ZA-1200 | 8d | 0d | SIC- Cost [38897.9]; Plumbing Helper [114.64 h]; Labor [38.41 h]; Plumber [114.64 h]; Excavator [13 h]; Excavator Operator [143.3 h]; Un-Skilled Labor [143.3 h]; Skilled Labor [143.3 h] | 9,725.85 | Z A |
|  | 2 | **Pipes Laying** |  | 2027-04-04 | 2027-04-22 |  |  |  |  |  |  |
| SDR-2-CON-PW-ZA-1210 |  | Install PW 225 mm HDPE Pipe | 17d | 2027-04-04 | 2027-04-22 | SDR-2-CON-PW-ZA-2220 | 8d | 1d | SIC- Cost [126418]; Plumbing Helper [114.64 h]; Labor [76.81 h]; Plumber [114.64 h]; Excavator [6 h]; Excavator Operator [143.3 h]; Un-Skilled Labor [143.3 h]; Skilled Labor [143.3 h] | 87,532.6 | Z A |
|  | 5 | **Testing** |  | 2027-04-28 | 2027-05-05 |  |  |  |  |  |  |
| SDR-2-CON-PW-ZA-1280 |  | Testing of PW HDPE Pipe 225 mm. | 7d | 2027-04-28 | 2027-05-05 | SDR-2-CON-SE-ZA-2690, SDR-2-CON-PW-ZA-1210 FS+3d | 7d | 0d | SIC- Cost [29173.4]; Plumbing Helper [76.43 h]; Labor [25.6 h]; Plumber [76.43 h]; Excavator [8 h]; Excavator Operator [95.54 h]; Un-Skilled Labor [95.54 h]; Skilled Labor [95.54 h] | 19,451.69 | Z A |
|  | 4 | **Backfilling** |  | 2027-05-06 | 2027-05-31 |  |  |  |  |  |  |
| SDR-2-CON-PW-ZA-2230 |  | Backfilling of PW HDPE Pipe 225 mm. | 17d | 2027-05-06 | 2027-05-31 | SDR-2-CON-PW-ZA-1280 | 7d | 0d | SIC- Cost [29173.4]; Plumbing Helper [171.96 h]; Labor [25.6 h]; Plumber [171.96 h]; Excavator [6 h]; Excavator Operator [184.73 h]; Un-Skilled Labor [214.96 h]; Skilled Labor [214.96 h] | 38,903.37 | Z A |
|  | 3 | **Valve Chambers & Valves & Fire Hydrant** |  | 2026-12-13 | 2027-05-30 |  |  |  |  |  |  |
|  | 3 | **Excavation** |  | 2026-12-13 | 2027-02-03 |  |  |  |  |  |  |
| SDR-2-CON-PW-ZA-3760 |  | Excavation for Valve Chambers Section 1 | 20d | 2026-12-13 | 2027-01-04 | SDR-2-CON-PW-ZA-3750 SS | 33d | 6d | SIC- Cost [56482.5]; Plumbing Helper [229.29 h]; Labor [25.6 h]; Plumber [229.29 h]; Excavator [18 h]; Excavator Operator [286.61 h]; Un-Skilled Labor [286.61 h]; Skilled Labor [286.61 h] | 15,062.79 | Z A |
| SDR-2-CON-PW-ZA-2680 |  | Excavation for Valve Chambers Section 2 | 20d | 2027-01-12 | 2027-02-03 | SDR-2-CON-PW-ZA-3760, SDR-2-CON-SL-ZA-3290 | 27d | 0d | SIC- Cost [56482.5]; Plumbing Helper [229.29 h]; Labor [25.6 h]; Plumber [229.29 h]; Excavator [18 h]; Excavator Operator [286.61 h]; Un-Skilled Labor [286.61 h]; Skilled Labor [286.61 h] | 15,062.79 | Z A |
|  | 1 | **bedding Works** |  | 2027-02-04 | 2027-02-28 |  |  |  |  |  |  |
| SDR-2-CON-PW-ZA-2660 |  | Sand bedding for Valve Chambers | 20d | 2027-02-04 | 2027-02-28 | SDR-2-CON-PW-ZA-2680 | 27d | 0d | SIC- Cost [23901.1]; Plumbing Helper [114.64 h]; Labor [25.6 h]; Plumber [114.64 h]; Excavator [6 h]; Excavator Operator [143.3 h]; Un-Skilled Labor [143.3 h]; Skilled Labor [143.3 h] | 20,083.72 | Z A |
|  | 4 | **Install Chambers & Valves & Fire Hydrant** |  | 2027-03-01 | 2027-03-28 |  |  |  |  |  |  |
| SDR-2-CON-PW-ZA-2690 |  | Install Chambers & Valves | 20d | 2027-03-01 | 2027-03-28 | SDR-2-CON-PW-ZA-2660 | 27d | 23d | SIC- Cost [18906.2]; Plumbing Helper [133.75 h]; Labor [25.6 h]; Plumber [133.75 h]; Excavator [12 h]; Excavator Operator [167.19 h]; Un-Skilled Labor [167.19 h]; Skilled Labor [167.19 h] | 90,376.7 | Z A |
|  | 2 | **Testing** |  | 2027-04-28 | 2027-05-06 |  |  |  |  |  |  |
| SDR-2-CON-PW-ZA-2670 |  | Testing for Chambers & Valves | 8d | 2027-04-28 | 2027-05-06 | SDR-2-CON-SE-ZA-2690, SDR-2-CON-RW-ZG-1160, SDR-2-CON-PW-ZA-2690 FS+3d | 4d | 0d | SIC- Cost [23901.1]; Plumbing Helper [76.43 h]; Labor [25.6 h]; Plumber [40.13 h]; Excavator [8 h]; Excavator Operator [95.54 h]; Un-Skilled Labor [95.54 h]; Skilled Labor [95.54 h] | 20,083.72 | Z A |
|  | 6 | **Backfilling** |  | 2027-05-08 | 2027-05-30 |  |  |  |  |  |  |
| SDR-2-CON-PW-ZA-2700 |  | Backfilling for Chambers & Valves | 15d | 2027-05-08 | 2027-05-30 | SDR-2-CON-PW-ZA-2670 | 18d | 16d | SIC- Cost [1798.57]; Plumbing Helper [124.2 h]; Labor [25.6 h]; Plumber [124.2 h]; Excavator [6 h]; Excavator Operator [155.25 h]; Un-Skilled Labor [155.25 h]; Skilled Labor [155.25 h] | 40,167.42 | Z A |
|  | 12 | **PORTABLE WATER IN ( PH2-A-MCB0 )** |  | 2026-12-13 | 2027-06-17 |  |  |  |  |  |  |
|  | 7 | **Pipes Work** |  | 2026-12-13 | 2027-06-17 |  |  |  |  |  |  |
|  | 1 | **Excavation** |  | 2026-12-13 | 2027-01-30 |  |  |  |  |  |  |
| SDR-2-CON-PW-ZA-3770 |  | Excavation for PW HDPE Pipe 225 mm. Section 1 | 21d | 2026-12-13 | 2027-01-05 | SDR-2-CON-PW-ZA-3750 SS | 17d | 0d | SIC- Cost; Plumbing Helper [67.9 h]; Labor [38.41 h]; Plumber [67.9 h]; Excavator [17.38 h]; Excavator Operator [67.9 h]; Un-Skilled Labor [67.9 h]; Skilled Labor [67.9 h] | 19,451.69 | Z A |
| SDR-2-CON-PW-ZA-2710 |  | Excavation for PW HDPE Pipe 225 mm. Section 2 | 21d | 2027-01-06 | 2027-01-30 | SDR-2-CON-PW-ZA-3770, SDR-2-CON-SL-ZA-3410, SDR-2-CON-SL-ZA-3370, SDR-2-CON-SL-ZA-3330 | 57d | 45d | SIC- Cost; Plumbing Helper [67.9 h]; Labor [38.41 h]; Plumber [67.9 h]; Excavator [17.38 h]; Excavator Operator [67.9 h]; Un-Skilled Labor [67.9 h]; Skilled Labor [67.9 h] | 19,451.69 | Z A |

| ID | WBS | Activity | Duration | Start | Finish | Predecessors | Complete | Remaining | Planned start | Planned finish | Total float | Free float | Resources | Cost | ZONE A |
| --- | --- | --- | --- | --- | --- | --- | --- | --- | --- | --- | --- | --- | --- | --- | --- |
|  | 3 | **bedding Works** |  | 2027-03-30 | 2027-04-22 |  |  |  |  |  |  |  |  |  |  |
| SDR-2-CON-PW-ZA-2740 |  | Sand bedding for PW HDPE Pipe 225 mm. | 21d | 2027-03-30 | 2027-04-22 | SDR-2-CON-PW-ZA-2710, SDR-2-CON-TS-ZA-2530 FS+4d |  |  |  |  | 12d | 0d | SIC- Cost; Plumbing Helper [105.09 h]; Labor [38.41 h]; Plumber [105.09 h]; Excavator [6 h]; Excavator Operator [131.36 h]; Un-Skilled Labor [131.36 h]; Skilled Labor [131.36 h] | 9,725.85 | Z A |
|  | 2 | **Pipes Laying** |  | 2027-04-24 | 2027-05-22 |  |  |  |  |  |  |  |  |  |  |
| SDR-2-CON-PW-ZA-2720 |  | Install PW 225 mm HDPE Pipe | 20d | 2027-04-24 | 2027-05-22 | SDR-2-CON-PW-ZA-2740 |  |  |  |  | 12d | 10d | SIC- Cost [126418]; Plumbing Helper [171.96 h]; Labor [76.81 h]; Plumber [171.96 h]; Excavator [12 h]; Excavator Operator [214.96 h]; Un-Skilled Labor [214.96 h]; Skilled Labor [214.96 h] | 87,532.6 | Z A |
|  | 5 | **Testing** |  | 2027-06-03 | 2027-06-12 |  |  |  |  |  |  |  |  |  |  |
| SDR-2-CON-PW-ZA-2730 |  | Testing of PW HDPE Pipe 225 mm. | 8d | 2027-06-03 | 2027-06-12 | SDR-2-CON-RW-ZA-2270, SDR-2-CON-RW-ZA-2130, SDR-2-CON-RW-ZA-1990, SDR-2-CON-RW-ZA-1850, SDR-2-CON-RW-ZA-1570, SDR-2-CON-RW-ZA-1430, SDR-2-CON-RW-ZA-1290, SDR-2-CON-RW-ZA-1150, SDR-2-CON-PW-ZA-2720 |  |  |  |  | 2d | 0d | SIC- Cost [29173.4]; Plumbing Helper [76.43 h]; Labor [25.6 h]; Plumber [76.43 h]; Excavator [8 h]; Excavator Operator [95.54 h]; Un-Skilled Labor [95.54 h]; Skilled Labor [95.54 h] | 19,451.69 | Z A |
|  | 4 | **Backfilling** |  | 2027-06-03 | 2027-06-17 |  |  |  |  |  |  |  |  |  |  |
| SDR-2-CON-PW-ZA-2750 |  | Backfilling of PW HDPE Pipe 225 mm. | 13d | 2027-06-03 | 2027-06-17 | SDR-2-CON-PW-ZA-2730 SS |  |  |  |  | 2d | 0d | SIC- Cost [29173.4]; Plumbing Helper [40.13 h]; Labor [25.6 h]; Plumber [40.13 h]; Excavator [6 h]; Excavator Operator [214.96 h]; Un-Skilled Labor [214.96 h]; Skilled Labor [214.96 h] | 38,903.37 | Z A |
|  | 3 | **Valve Chambers & Valves & Fire Hydrant** |  | 2026-12-13 | 2027-02-18 |  |  |  |  |  |  |  |  |  |  |
|  | 3 | **Excavation** |  | 2026-12-13 | 2027-01-05 |  |  |  |  |  |  |  |  |  |  |
| SDR-2-CON-PW-ZA-2780 |  | Excavation for Valve Chambers Section 2 | 21d | 2026-12-13 | 2027-01-05 | SDR-2-CON-PW-ZA-3780 SS |  |  |  |  | 94d | 0d | SIC- Cost [56482.5]; Plumbing Helper [191.07 h]; Labor [25.6 h]; Plumber [191.07 h]; Excavator [18 h]; Excavator Operator [238.84 h]; Un-Skilled Labor [238.84 h]; Skilled Labor [238.84 h] | 15,062.79 | Z A |
| SDR-2-CON-PW-ZA-3780 |  | Excavation for Valve Chambers Section 1 | 21d | 2026-12-13 | 2027-01-05 | SDR-2-CON-PW-ZA-3770 SS |  |  |  |  | 94d | 0d | SIC- Cost [56482.5]; Plumbing Helper [191.07 h]; Labor [25.6 h]; Plumber [191.07 h]; Excavator [18 h]; Excavator Operator [238.84 h]; Un-Skilled Labor [238.84 h]; Skilled Labor [238.84 h] | 15,062.79 | Z A |
|  | 1 | **bedding Works** |  | 2026-12-13 | 2027-01-04 |  |  |  |  |  |  |  |  |  |  |
| SDR-2-CON-PW-ZA-2760 |  | Sand bedding for Valve Chambers | 20d | 2026-12-13 | 2027-01-04 | SDR-2-CON-PW-ZA-2780 SS |  |  |  |  | 94d | 0d | SIC- Cost [23901.1]; Plumbing Helper [105.09 h]; Labor [25.6 h]; Plumber [105.09 h]; Excavator [6 h]; Excavator Operator [131.36 h]; Un-Skilled Labor [131.36 h]; Skilled Labor [131.36 h] | 20,083.72 | Z A |
|  | 4 | **Install Chambers & Valves & Fire Hydrant** |  | 2027-01-05 | 2027-01-26 |  |  |  |  |  |  |  |  |  |  |
| SDR-2-CON-PW-ZA-2790 |  | Install Chambers & Valves | 19d | 2027-01-05 | 2027-01-26 | SDR-2-CON-PW-ZA-2760 |  |  |  |  | 94d | 0d | SIC- Cost [18906.2]; Plumbing Helper [191.07 h]; Labor [25.6 h]; Plumber [191.07 h]; Excavator [13.89 h]; Excavator Operator [178.38 h]; Un-Skilled Labor [178.38 h]; Skilled Labor [178.38 h] | 90,376.7 | Z A |
|  | 2 | **Testing** |  | 2027-01-27 | 2027-02-04 |  |  |  |  |  |  |  |  |  |  |
| SDR-2-CON-PW-ZA-2770 |  | Testing for Chambers & Valves | 8d | 2027-01-27 | 2027-02-04 | SDR-2-CON-PW-ZA-2790 |  |  |  |  | 94d | 0d | SIC- Cost [23901.1]; Plumbing Helper [76.43 h]; Labor [25.6 h]; Plumber [76.43 h]; Excavator [10 h]; Excavator Operator [95.54 h]; Un-Skilled Labor [95.54 h]; Skilled Labor [95.54 h] | 20,083.72 | Z A |
|  | 6 | **Backfilling** |  | 2027-02-06 | 2027-02-18 |  |  |  |  |  |  |  |  |  |  |
| SDR-2-CON-PW-ZA-2800 |  | Backfilling for Chambers & Valves | 12d | 2027-02-06 | 2027-02-18 | SDR-2-CON-PW-ZA-2770 |  |  |  |  | 94d | 92d | SIC- Cost [1798.57]; Plumbing Helper [95.54 h]; Labor [25.6 h]; Plumber [95.54 h]; Excavator [6 h]; Excavator Operator [119.42 h]; Un-Skilled Labor [119.42 h]; Skilled Labor [119.42 h] | 40,167.42 | Z A |
|  | 3 | **PORTABLE WATER IN ( PH2-A-MCC0 )** |  | 2026-09-24 | 2027-05-10 |  |  |  |  |  |  |  |  |  |  |
|  | 7 | **Pipes Work** |  | 2026-09-24 | 2027-03-22 |  |  |  |  |  |  |  |  |  |  |
|  | 1 | **Excavation** |  | 2026-09-24 | 2027-01-06 |  |  |  |  |  |  |  |  |  |  |
| SDR-2-CON-PW-ZA-1400 |  | Excavation for PW HDPE Pipe 160 mm. Section 1 | 21d | 2026-09-24 A | 2026-10-01 A | SDR-2-CON-PW-ZA-3790 | 100% |  | 2027-01-11 | 2027-02-03 |  |  | SIC- Cost [11823.1]; Plumbing Helper [67.9 h]; Labor [38.41 h]; Plumber [67.9 h]; Excavator [12 h]; Excavator Operator [67.9 h]; Un-Skilled Labor [135.79 h]; Skilled Labor [135.79 h] | 5,914.33 | Z A |
| SDR-2-CON-PW-ZA-3790 |  | Excavation for PW HDPE Pipe 160 mm. Section 2 | 21d | 2026-10-01 A | 2027-01-06 | SDR-2-CON-PW-ZA-3770 FF | 50% | 0d | 2026-12-12 | 2027-01-04 | 17d | 0d | SIC- Cost [11823.1]; Plumbing Helper [67.9 h]; Labor [38.41 h]; Plumber [67.9 h]; Excavator [12 h]; Excavator Operator [67.9 h]; Un-Skilled Labor [135.79 h]; Skilled Labor [135.79 h] | 5,914.33 | Z A |

| ID | WBS | Activity | Duration | Start | Finish | Predecessors | Complete | Remaining | Planned start | Planned finish | Total float | Free float | Resources | Cost | ZONE A |
| --- | --- | --- | --- | --- | --- | --- | --- | --- | --- | --- | --- | --- | --- | --- | --- |
|  | 3 | **bedding Works** |  | 2026-10-22 | 2027-01-28 |  |  |  |  |  |  |  |  |  |  |
| SDR-2-CON-PW-ZA-2240 |  | Sand bedding for PW HDPE Pipe 160 mm. | 20d | 2026-10-22 A | 2027-01-28 | SDR-2-CON-PW-ZA-1400 | 25% | 20d | 2026-12-31 | 2027-01-23 | 72d | 0d | SIC- Cost [11823.1]; Plumbing Helper [95.54 h]; Labor [38.41 h]; Plumber [95.54 h]; Excavator [12 h]; Excavator Operator [119.42 h]; Un-Skilled Labor [119.42 h]; Skilled Labor [119.42 h] | 2,957.16 | Z A |
|  | 2 | **Pipes Laying** |  | 2026-10-22 | 2027-02-21 |  |  |  |  |  |  |  |  |  |  |
| SDR-2-CON-PW-ZA-1410 |  | Install PW 160 mm HDPE Pipe | 20d | 2026-10-22 A | 2027-02-21 | SDR-2-CON-PW-ZA-2240 | 25% | 20d | 2027-01-24 | 2027-02-15 | 72d | 0d | SIC- Cost [38425.2]; Plumbing Helper [171.96 h]; Labor [76.81 h]; Plumber [171.96 h]; Excavator [10.81 h]; Excavator Operator [164.57 h]; Un-Skilled Labor [164.57 h]; Skilled Labor [164.57 h] | 26,614.45 | Z A |
|  | 5 | **Testing** |  | 2027-02-23 | 2027-03-03 |  |  |  |  |  |  |  |  |  |  |
| SDR-2-CON-PW-ZA-1480 |  | Testing of PW HDPE Pipe 160 mm. | 8d | 2027-02-23 | 2027-03-03 | SDR-2-CON-PW-ZA-1410 |  |  |  |  | 72d | 0d | SIC- Cost [8867.35]; Plumbing Helper [76.43 h]; Labor [25.6 h]; Plumber [76.43 h]; Excavator [6 h]; Excavator Operator [95.54 h]; Un-Skilled Labor [65.3 h]; Skilled Labor [95.54 h] | 5,914.33 | Z A |
|  | 4 | **Backfilling** |  | 2027-03-04 | 2027-03-22 |  |  |  |  |  |  |  |  |  |  |
| SDR-2-CON-PW-ZA-2250 |  | Backfilling of PW HDPE Pipe 160 mm. | 12d | 2027-03-04 | 2027-03-22 | SDR-2-CON-PW-ZA-1480 |  |  |  |  | 72d | 70d | SIC- Cost [8867.35]; Plumbing Helper [51.28 h]; Labor [25.6 h]; Plumber [51.28 h]; Excavator [6 h]; Excavator Operator [167.19 h]; Un-Skilled Labor [167.19 h]; Skilled Labor [167.19 h] | 11,828.64 | Z A |
|  | 3 | **Valve Chambers & Valves & Fire Hydrant** |  | 2027-01-06 | 2027-05-10 |  |  |  |  |  |  |  |  |  |  |
|  | 3 | **Excavation** |  | 2027-01-06 | 2027-02-24 |  |  |  |  |  |  |  |  |  |  |
| SDR-2-CON-PW-ZA-3800 |  | Excavation for Valve Chambers Section 1 | 21d | 2027-01-06 | 2027-01-30 | SDR-2-CON-PW-ZA-3790 SS |  |  |  |  | 30d | 0d | SIC- Cost [56482.5]; Plumbing Helper [191.07 h]; Labor [25.6 h]; Plumber [191.07 h]; Excavator [12 h]; Excavator Operator [238.84 h]; Un-Skilled Labor [238.84 h]; Skilled Labor [238.84 h] | 15,062.79 | Z A |
| SDR-2-CON-PW-ZA-3230 |  | Excavation for Valve Chambers Section 2 | 21d | 2027-01-31 | 2027-02-24 | SDR-2-CON-PW-ZA-3800, SDR-2-CON-SL-ZA-3250 |  |  |  |  | 30d | 0d | SIC- Cost [56482.5]; Plumbing Helper [191.07 h]; Labor [25.6 h]; Plumber [191.07 h]; Excavator [12 h]; Excavator Operator [238.84 h]; Un-Skilled Labor [238.84 h]; Skilled Labor [238.84 h] | 15,062.79 | Z A |
|  | 1 | **bedding Works** |  | 2027-02-25 | 2027-03-24 |  |  |  |  |  |  |  |  |  |  |
| SDR-2-CON-PW-ZA-3210 |  | Sand bedding for Valve Chambers | 20d | 2027-02-25 | 2027-03-24 | SDR-2-CON-PW-ZA-3230 |  |  |  |  | 30d | 0d | SIC- Cost [23901.1]; Plumbing Helper [114.64 h]; Labor [25.6 h]; Plumber [114.64 h]; Excavator [12 h]; Excavator Operator [143.3 h]; Un-Skilled Labor [143.3 h]; Skilled Labor [143.3 h] | 20,083.72 | Z A |
|  | 4 | **Install Chambers & Valves & Fire Hydrant** |  | 2027-03-25 | 2027-04-17 |  |  |  |  |  |  |  |  |  |  |
| SDR-2-CON-PW-ZA-3240 |  | Install Chambers & Valves | 20d | 2027-03-25 | 2027-04-17 | SDR-2-CON-PW-ZA-3210 |  |  |  |  | 30d | 0d | SIC- Cost [18906.2]; Plumbing Helper [191.07 h]; Labor [25.6 h]; Plumber [191.07 h]; Excavator [6 h]; Excavator Operator [168.3 h]; Un-Skilled Labor [168.3 h]; Skilled Labor [178.37 h] | 90,376.7 | Z A |
|  | 2 | **Testing** |  | 2027-04-18 | 2027-04-24 |  |  |  |  |  |  |  |  |  |  |
| SDR-2-CON-PW-ZA-3220 |  | Testing for Chambers & Valves | 6d | 2027-04-18 | 2027-04-24 | SDR-2-CON-PW-ZA-3240 |  |  |  |  | 30d | 0d | SIC- Cost [23901.1]; Plumbing Helper [76.43 h]; Labor [25.6 h]; Plumber [76.43 h]; Excavator [8 h]; Excavator Operator [95.54 h]; Un-Skilled Labor [95.54 h]; Skilled Labor [95.54 h] | 20,083.72 | Z A |
|  | 6 | **Backfilling** |  | 2027-04-25 | 2027-05-10 |  |  |  |  |  |  |  |  |  |  |
| SDR-2-CON-PW-ZA-3250 |  | Backfilling for Chambers & Valves | 14d | 2027-04-25 | 2027-05-10 | SDR-2-CON-PW-ZA-3220 |  |  |  |  | 30d | 28d | SIC- Cost [1798.57]; Plumbing Helper [49.69 h]; Labor [25.6 h]; Plumber [49.69 h]; Excavator [10 h]; Excavator Operator [167.19 h]; Un-Skilled Labor [167.19 h]; Skilled Labor [167.19 h] | 40,167.42 | Z A |
|  | 4 | **PORTABLE WATER IN ( PH2-A-MCD0 )** |  | 2026-09-24 | 2027-05-23 |  |  |  |  |  |  |  |  |  |  |
|  | 7 | **Pipes Work** |  | 2026-09-24 | 2027-04-29 |  |  |  |  |  |  |  |  |  |  |
|  | 1 | **Excavation** |  | 2026-09-24 | 2027-01-12 |  |  |  |  |  |  |  |  |  |  |
| SDR-2-CON-PW-ZA-3260 |  | Excavation for PW HDPE Pipe 160 mm. Section 1 | 21d | 2026-09-24 A | 2026-10-04 A | SDR-2-CON-PW-ZA-3810, SDR-2-CON-TE-ZA-4170, SDR-2-CON-TE-ZA-4180, SDR-2-CON-TE-ZA-4080, SDR-2-CON-TE-ZA-4090, SDR-2-CON-TE-ZA-3990, SDR-2-CON-TE-ZA-4000, SDR-2-CON-TE-ZA-3900, SDR-2-CON-TE-ZA-3910, SDR-2-CON-TE-ZA-3810, SDR-2-CON-TE-ZA-3820, SDR-2-CON-TE-ZA-3720 | 100% |  | 2027-01-23 | 2027-02-15 |  |  | SIC- Cost; Plumbing Helper [67.9 h]; Labor [38.41 h]; Plumber [67.9 h]; Excavator [28.88 h]; Excavator Operator [67.9 h]; Un-Skilled Labor [67.9 h]; Skilled Labor [67.9 h] | 5,914.33 | Z A |
| SDR-2-CON-PW-ZA-3810 |  | Excavation for PW HDPE Pipe 160 mm. Section 2 | 21d | 2026-10-05 A | 2027-01-12 | SDR-2-CON-TS-ZA-1270 SS, SDR-2-CON-PW-ZA-3790 FF, SDR-2-CON-SL-ZA-3290 | 50% | 0d | 2026-12-12 | 2027-01-04 | 12d | 0d | SIC- Cost; Plumbing Helper [67.9 h]; Labor [38.41 h]; Plumber [67.9 h]; Excavator [28.88 h]; Excavator Operator [67.9 h]; Un-Skilled Labor [67.9 h]; Skilled Labor [67.9 h] | 5,914.33 | Z A |

| ID | WBS | Activity | Duration | Start | Finish | Predecessors | Complete | Remaining | Planned start | Planned finish | Total float | Free float | Resources | Cost | ZONE A |
| --- | --- | --- | --- | --- | --- | --- | --- | --- | --- | --- | --- | --- | --- | --- | --- |
|  | 3 | **bedding Works** |  | 2026-10-22 | 2027-03-16 |  |  |  |  |  |  |  |  |  |  |
| SDR-2-CON-PW-ZA-3290 |  | Sand bedding for PW HDPE Pipe 160 mm. | 18d | 2026-10-22 A | 2027-03-16 | SDR-2-CON-PW-ZA-3260 | 25% | 18d | 2027-02-13 | 2027-03-06 | 20d | 0d | SIC- Cost [11823.1]; Plumbing Helper [95.54 h]; Labor [38.41 h]; Plumber [95.54 h]; Excavator [12 h]; Excavator Operator [67.9 h]; Un-Skilled Labor [67.9 h]; Skilled Labor [67.9 h] | 2,957.16 | Z A |
|  | 2 | **Pipes Laying** |  | 2026-10-24 | 2027-04-08 |  |  |  |  |  |  |  |  |  |  |
| SDR-2-CON-PW-ZA-3270 |  | Install PW 160 mm HDPE Pipe | 20d | 2026-10-24 A | 2027-04-08 | SDR-2-CON-PW-ZA-3290 | 25% | 20d | 2027-03-07 | 2027-04-03 | 20d | 0d | SIC- Cost [38425.2]; Plumbing Helper [152.86 h]; Labor [76.81 h]; Plumber [152.86 h]; Excavator [12 h]; Excavator Operator [140.68 h]; Un-Skilled Labor [140.68 h]; Skilled Labor [150.76 h] | 26,614.45 | Z A |
|  | 5 | **Testing** |  | 2027-04-10 | 2027-04-18 |  |  |  |  |  |  |  |  |  |  |
| SDR-2-CON-PW-ZA-3280 |  | Testing of PW HDPE Pipe 160 mm. | 8d | 2027-04-10 | 2027-04-18 | SDR-2-CON-PW-ZA-3270 |  |  |  |  | 20d | 0d | SIC- Cost [8867.35]; Plumbing Helper [76.43 h]; Labor [25.6 h]; Plumber [76.43 h]; Excavator [6 h]; Excavator Operator [95.54 h]; Un-Skilled Labor [95.54 h]; Skilled Labor [95.54 h] | 5,914.33 | Z A |
|  | 4 | **Backfilling** |  | 2027-04-19 | 2027-04-29 |  |  |  |  |  |  |  |  |  |  |
| SDR-2-CON-PW-ZA-3300 |  | Backfilling of PW HDPE Pipe 160 mm. | 10d | 2027-04-19 | 2027-04-29 | SDR-2-CON-PW-ZA-3280 |  |  |  |  | 39d | 37d | SIC- Cost [8867.35]; Plumbing Helper [143.3 h]; Labor [25.6 h]; Plumber [40.13 h]; Excavator [6 h]; Excavator Operator [179.13 h]; Un-Skilled Labor [179.13 h]; Skilled Labor [179.13 h] | 11,828.64 | Z A |
|  | 3 | **Valve Chambers & Valves & Fire Hydrant** |  | 2027-01-12 | 2027-05-23 |  |  |  |  |  |  |  |  |  |  |
|  | 3 | **Excavation** |  | 2027-01-12 | 2027-03-08 |  |  |  |  |  |  |  |  |  |  |
| SDR-2-CON-PW-ZA-3820 |  | Excavation for Valve Chambers Section 1 | 21d | 2027-01-12 | 2027-02-04 | SDR-2-CON-PW-ZA-3810 SS |  |  |  |  | 12d | 5d | SIC- Cost [56482.5]; Plumbing Helper [229.29 h]; Labor [25.6 h]; Plumber [229.29 h]; Excavator [12 h]; Excavator Operator [286.61 h]; Un-Skilled Labor [286.61 h]; Skilled Labor [286.61 h] | 15,062.79 | Z A |
| SDR-2-CON-PW-ZA-3330 |  | Excavation for Valve Chambers Section 2 | 21d | 2027-02-11 | 2027-03-08 | SDR-2-CON-PW-ZA-3820, SDR-2-CON-CC-ZA-1780, SDR-2-CON-TE-ZA-3630 |  |  |  |  | 7d | 0d | SIC- Cost [56482.5]; Plumbing Helper [229.29 h]; Labor [25.6 h]; Plumber [229.29 h]; Excavator [12 h]; Excavator Operator [286.61 h]; Un-Skilled Labor [286.61 h]; Skilled Labor [286.61 h] | 15,062.79 | Z A |
|  | 1 | **bedding Works** |  | 2027-03-14 | 2027-04-03 |  |  |  |  |  |  |  |  |  |  |
| SDR-2-CON-PW-ZA-3310 |  | Sand bedding for Valve Chambers | 18d | 2027-03-14 | 2027-04-03 | SDR-2-CON-PW-ZA-3330 |  |  |  |  | 7d | 0d | SIC- Cost [23901.1]; Plumbing Helper [95.54 h]; Labor [25.6 h]; Plumber [95.54 h]; Excavator [12 h]; Excavator Operator [119.42 h]; Un-Skilled Labor [119.42 h]; Skilled Labor [119.42 h] | 20,083.72 | Z A |
|  | 4 | **Install Chambers & Valves & Fire Hydrant** |  | 2027-04-04 | 2027-04-26 |  |  |  |  |  |  |  |  |  |  |
| SDR-2-CON-PW-ZA-3340 |  | Install Chambers & Valves | 20d | 2027-04-04 | 2027-04-26 | SDR-2-CON-PW-ZA-3310 |  |  |  |  | 7d | 0d | SIC- Cost [18906.2]; Plumbing Helper [191.07 h]; Labor [25.6 h]; Plumber [191.07 h]; Excavator [12 h]; Excavator Operator [158.22 h]; Un-Skilled Labor [158.22 h]; Skilled Labor [168.3 h] | 90,376.7 | Z A |
|  | 2 | **Testing** |  | 2027-04-27 | 2027-05-05 |  |  |  |  |  |  |  |  |  |  |
| SDR-2-CON-PW-ZA-3320 |  | Testing for Chambers & Valves | 8d | 2027-04-27 | 2027-05-05 | SDR-2-CON-PW-ZA-3340 |  |  |  |  | 7d | 0d | SIC- Cost [23901.1]; Plumbing Helper [66.88 h]; Labor [25.6 h]; Plumber [66.88 h]; Excavator [6 h]; Excavator Operator [83.59 h]; Un-Skilled Labor [83.59 h]; Skilled Labor [83.59 h] | 20,083.72 | Z A |
|  | 6 | **Backfilling** |  | 2027-05-06 | 2027-05-23 |  |  |  |  |  |  |  |  |  |  |
| SDR-2-CON-PW-ZA-3350 |  | Backfilling for Chambers & Valves | 10d | 2027-05-06 | 2027-05-23 | SDR-2-CON-PW-ZA-3320 |  |  |  |  | 7d | 0d | SIC- Cost [1798.57]; Plumbing Helper [40.13 h]; Labor [25.6 h]; Plumber [40.13 h]; Excavator [6 h]; Excavator Operator [191.07 h]; Un-Skilled Labor [191.07 h]; Skilled Labor [191.07 h] | 40,167.42 | Z A |
|  | 5 | **PORTABLE WATER IN ( PH2-A-MCE0 )** |  | 2026-09-07 | 2027-06-15 |  |  |  |  |  |  |  |  |  |  |
|  | 7 | **Pipes Work** |  | 2026-09-07 | 2027-02-06 |  |  |  |  |  |  |  |  |  |  |
|  | 1 | **Excavation** |  | 2026-09-07 | 2026-10-10 |  |  |  |  |  |  |  |  |  |  |
| SDR-2-CON-PW-ZA-3830 |  | Excavation for PW HDPE Pipe 160 mm. Section 1 | 21d | 2026-09-07 A | 2026-09-14 A | SDR-2-CON-TE-ZA-4540 SS, SDR-2-CON-TE-ZA-4360 SS | 100% |  | 2027-01-07 | 2027-01-31 |  |  | SIC- Cost [11823.1]; Plumbing Helper [219.73 h]; Labor [38.41 h]; Plumber [219.73 h]; Excavator [26.85 h]; Excavator Operator [274.67 h]; Un-Skilled Labor [274.67 h]; Skilled Labor [274.67 h] | 5,914.33 | Z A |
| SDR-2-CON-PW-ZA-3360 |  | Excavation for PW HDPE Pipe 160 mm. Section 2 | 21d | 2026-10-05 A | 2026-10-10 A | SDR-2-CON-PW-ZA-3830, SDR-2-CON-TE-ZA-4440, SDR-2-CON-TE-ZA-4450 | 100% |  | 2026-11-07 | 2026-11-30 |  |  | SIC- Cost [11823.1]; Plumbing Helper [219.73 h]; Labor [38.41 h]; Plumber [219.73 h]; Excavator [26.85 h]; Excavator Operator [274.67 h]; Un-Skilled Labor [274.67 h]; Skilled Labor [274.67 h] | 5,914.33 | Z A |

| ID | WBS | Activity | Duration | Start | Finish | Predecessors | Complete | Remaining | Planned start | Planned finish | Total float | Free float | Resources | Cost | ZONE A |
| --- | --- | --- | --- | --- | --- | --- | --- | --- | --- | --- | --- | --- | --- | --- | --- |
|  | 3 | **bedding Works** |  | 2026-10-11 | 2026-12-23 |  |  |  |  |  |  |  |  |  |  |
| SDR-2-CON-PW-ZA-3390 |  | Sand bedding for PW HDPE Pipe 160 mm. | 18d | 2026-10-11 A | 2026-12-23 | SDR-2-CON-PW-ZA-3360 | 50% | 18d | 2026-11-14 | 2026-12-03 | 76d | 0d | SIC- Cost [11823.1]; Plumbing Helper [76.43 h]; Labor [38.41 h]; Plumber [76.43 h]; Excavator [6 h]; Excavator Operator [95.54 h]; Un-Skilled Labor [95.54 h]; Skilled Labor [95.54 h] | 2,957.16 | Z A |
|  | 2 | **Pipes Laying** |  | 2026-10-11 | 2027-01-10 |  |  |  |  |  |  |  |  |  |  |
| SDR-2-CON-PW-ZA-3370 |  | Install PW 160 mm HDPE Pipe | 15d | 2026-10-11 A | 2027-01-10 | SDR-2-CON-PW-ZA-3390 | 50% | 15d | 2026-12-05 | 2026-12-21 | 76d | 0d | SIC- Cost [38425.2]; Plumbing Helper [143.3 h]; Labor [76.81 h]; Plumber [143.3 h]; Excavator [12 h]; Excavator Operator [128.74 h]; Un-Skilled Labor [128.74 h]; Skilled Labor [128.74 h] | 26,614.45 | Z A |
|  | 5 | **Testing** |  | 2027-01-11 | 2027-01-19 |  |  |  |  |  |  |  |  |  |  |
| SDR-2-CON-PW-ZA-3380 |  | Testing of PW HDPE Pipe 160 mm. | 8d | 2027-01-11 | 2027-01-19 | SDR-2-CON-PW-ZA-3370 |  |  |  |  | 76d | 0d | SIC- Cost [8867.35]; Plumbing Helper [76.43 h]; Labor [25.6 h]; Plumber [76.43 h]; Excavator [12 h]; Excavator Operator [95.54 h]; Un-Skilled Labor [95.54 h]; Skilled Labor [95.54 h] | 5,914.33 | Z A |
|  | 4 | **Backfilling** |  | 2027-01-20 | 2027-02-06 |  |  |  |  |  |  |  |  |  |  |
| SDR-2-CON-PW-ZA-3400 |  | Backfilling of PW HDPE Pipe 160 mm. | 15d | 2027-01-20 | 2027-02-06 | SDR-2-CON-PW-ZA-3380 |  |  |  |  | 76d |  | SIC- Cost [8867.35]; Plumbing Helper [124.2 h]; Labor [25.6 h]; Plumber [65.31 h]; Excavator [10 h]; Excavator Operator [155.25 h]; Un-Skilled Labor [155.25 h]; Skilled Labor [155.25 h] | 11,828.64 | Z A |
|  | 3 | **Valve Chambers & Valves & Fire Hydrant** |  | 2026-11-01 | 2027-06-15 |  |  |  |  |  |  |  |  |  |  |
|  | 3 | **Excavation** |  | 2026-11-01 | 2027-04-03 |  |  |  |  |  |  |  |  |  |  |
| SDR-2-CON-PW-ZA-3840 |  | Excavation for Valve Chambers Section 1 | 20d | 2026-11-01 | 2026-11-23 | SDR-2-CON-PW-ZA-3830 SS |  |  |  |  | 91d | 86.19d | SIC- Cost [56482.5]; Plumbing Helper [200.63 h]; Labor [25.6 h]; Plumber [200.63 h]; Excavator [18 h]; Excavator Operator [250.78 h]; Un-Skilled Labor [250.78 h]; Skilled Labor [250.78 h] | 15,062.79 | Z A |
| SDR-2-CON-PW-ZA-3430 |  | Excavation for Valve Chambers Section 2 | 20d | 2027-03-06 | 2027-04-03 | SDR-2-CON-PW-ZA-3840, SDR-2-CON-TE-ZA-3450, SDR-2-CON-TE-ZA-3360 |  |  |  |  | 4.81d | 0d | SIC- Cost [56482.5]; Plumbing Helper [200.63 h]; Labor [25.6 h]; Plumber [200.63 h]; Excavator [18 h]; Excavator Operator [250.78 h]; Un-Skilled Labor [250.78 h]; Skilled Labor [250.78 h] | 15,062.79 | Z A |
|  | 1 | **bedding Works** |  | 2027-04-03 | 2027-04-24 |  |  |  |  |  |  |  |  |  |  |
| SDR-2-CON-PW-ZA-3410 |  | Sand bedding for Valve Chambers | 18d | 2027-04-03 | 2027-04-24 | SDR-2-CON-PW-ZA-3430 |  |  |  |  | 4.81d | 0d | SIC- Cost [23901.1]; Plumbing Helper [76.43 h]; Labor [25.6 h]; Plumber [76.43 h]; Excavator [6 h]; Excavator Operator [95.54 h]; Un-Skilled Labor [95.54 h]; Skilled Labor [95.54 h] | 20,083.72 | Z A |
|  | 4 | **Install Chambers & Valves & Fire Hydrant** |  | 2027-04-24 | 2027-05-13 |  |  |  |  |  |  |  |  |  |  |
| SDR-2-CON-PW-ZA-3440 |  | Install Chambers & Valves | 17d | 2027-04-24 | 2027-05-13 | SDR-2-CON-PW-ZA-3410 |  |  |  |  | 4.81d | 0d | SIC- Cost [18906.2]; Plumbing Helper [162.41 h]; Labor [25.6 h]; Plumber [162.41 h]; Excavator [16 h]; Excavator Operator [142.55 h]; Un-Skilled Labor [152.62 h]; Skilled Labor [142.55 h] | 90,376.7 | Z A |
|  | 2 | **Testing** |  | 2027-05-13 | 2027-05-29 |  |  |  |  |  |  |  |  |  |  |
| SDR-2-CON-PW-ZA-3420 |  | Testing for Chambers & Valves | 8d | 2027-05-13 | 2027-05-29 | SDR-2-CON-PW-ZA-3440 |  |  |  |  | 4.81d | 0d | SIC- Cost [23901.1]; Plumbing Helper [76.43 h]; Labor [25.6 h]; Plumber [76.43 h]; Excavator [12 h]; Excavator Operator [95.54 h]; Un-Skilled Labor [95.54 h]; Skilled Labor [95.54 h] | 20,083.72 | Z A |
|  | 6 | **Backfilling** |  | 2027-05-29 | 2027-06-15 |  |  |  |  |  |  |  |  |  |  |
| SDR-2-CON-PW-ZA-3450 |  | Backfilling for Chambers & Valves | 15d | 2027-05-29 | 2027-06-15 | SDR-2-CON-PW-ZA-3420 |  |  |  |  | 4.81d | 2.81d | SIC- Cost [1798.57]; Plumbing Helper [114.64 h]; Labor [25.6 h]; Plumber [114.64 h]; Excavator [6 h]; Excavator Operator [143.3 h]; Un-Skilled Labor [143.3 h]; Skilled Labor [143.3 h] | 40,167.42 | Z A |
|  | 6 | **PORTABLE WATER IN ( PH2-A-MCF0 )** |  | 2026-10-01 | 2027-05-30 |  |  |  |  |  |  |  |  |  |  |
|  | 7 | **Pipes Work** |  | 2026-10-01 | 2027-04-29 |  |  |  |  |  |  |  |  |  |  |
|  | 1 | **Excavation** |  | 2026-10-01 | 2027-02-17 |  |  |  |  |  |  |  |  |  |  |
| SDR-2-CON-PW-ZA-3850 |  | Excavation for PW HDPE Pipe 160 mm. Section 1 | 21d | 2026-10-01 A | 2027-01-06 A | SDR-2-CON-PW-ZA-3830 SS+3d, SDR-2-CON-TE-ZA-3540, SDR-2-CON-TE-ZA-3550, SDR-2-CON-TE-ZA-3460, SDR-2-CON-TE-ZA-3370, SDR-2-CON-TE-ZA-3270 | 100% |  | 2027-01-05 | 2027-01-28 |  |  | SIC- Cost [62.6]; Plumbing Helper [135.79 h]; Labor [38.41 h]; Plumber [135.79 h]; Excavator [18 h]; Excavator Operator [135.79 h]; Un-Skilled Labor [135.79 h]; Skilled Labor [135.79 h] | 5,914.33 | Z A |
| SDR-2-CON-PW-ZA-3460 |  | Excavation for PW HDPE Pipe 160 mm. Section 2 | 21d | 2026-10-06 A | 2027-02-17 | SDR-2-CON-PW-ZA-3850 | 50% | 21d | 2027-01-05 | 2027-01-28 | 10d | 0d | SIC- Cost [11823.1]; Plumbing Helper [135.79 h]; Labor [38.41 h]; Plumber [135.79 h]; Excavator [18 h]; Excavator Operator [135.79 h]; Un-Skilled Labor [135.79 h]; Skilled Labor [135.79 h] | 5,914.33 | Z A |

| ID | WBS | Activity | Duration | Start | Finish | Predecessors | Complete | Remaining | Planned start | Planned finish | Total float | Free float | Resources | Cost | ZONE A |
| --- | --- | --- | --- | --- | --- | --- | --- | --- | --- | --- | --- | --- | --- | --- | --- |
|  | 3 | **bedding Works** |  | 2026-10-07 | 2027-03-16 |  |  |  |  |  |  |  |  |  |  |
| SDR-2-CON-PW-ZA-3490 |  | Sand bedding for PW HDPE Pipe 160 mm. | 18d | 2026-10-07 A | 2027-03-16 | SDR-2-CON-PW-ZA-3460 | 50% | 18d | 2027-01-30 | 2027-02-18 | 10d | 0d | SIC- Cost [11823.1]; Plumbing Helper [76.43 h]; Labor [38.41 h]; Plumber [76.43 h]; Excavator [6 h]; Excavator Operator [95.54 h]; Un-Skilled Labor [95.54 h]; Skilled Labor [95.54 h] | 2,957.16 | Z A |
|  | 2 | **Pipes Laying** |  | 2026-10-07 | 2027-04-08 |  |  |  |  |  |  |  |  |  |  |
| SDR-2-CON-PW-ZA-3470 |  | Install PW 160 mm HDPE Pipe | 20d | 2026-10-07 A | 2027-04-08 | SDR-2-CON-PW-ZA-3490 | 50% | 20d | 2027-02-20 | 2027-03-20 | 10d | 0d | SIC- Cost [38425.2]; Plumbing Helper [143.3 h]; Labor [76.81 h]; Plumber [143.3 h]; Excavator [12 h]; Excavator Operator [88.44 h]; Un-Skilled Labor [88.44 h]; Skilled Labor [98.51 h] | 26,614.45 | Z A |
|  | 5 | **Testing** |  | 2027-04-10 | 2027-04-15 |  |  |  |  |  |  |  |  |  |  |
| SDR-2-CON-PW-ZA-3480 |  | Testing of PW HDPE Pipe 160 mm. | 6d | 2027-04-10 | 2027-04-15 | SDR-2-CON-PW-ZA-3470 |  |  |  |  | 10d | 0d | SIC- Cost [8867.35]; Plumbing Helper [76.43 h]; Labor [25.6 h]; Plumber [76.43 h]; Excavator [12 h]; Excavator Operator [95.54 h]; Un-Skilled Labor [95.54 h]; Skilled Labor [95.54 h] | 5,914.33 | Z A |
|  | 4 | **Backfilling** |  | 2027-04-17 | 2027-04-29 |  |  |  |  |  |  |  |  |  |  |
| SDR-2-CON-PW-ZA-3500 |  | Backfilling of PW HDPE Pipe 160 mm. | 12d | 2027-04-17 | 2027-04-29 | SDR-2-CON-PW-ZA-3480 |  |  |  |  | 10d |  | SIC- Cost [8867.35]; Plumbing Helper [133.75 h]; Labor [25.6 h]; Plumber [133.75 h]; Excavator [6 h]; Excavator Operator [167.19 h]; Un-Skilled Labor [167.19 h]; Skilled Labor [167.19 h] | 11,828.64 | Z A |
|  | 3 | **Valve Chambers & Valves & Fire Hydrant** |  | 2027-01-25 | 2027-05-30 |  |  |  |  |  |  |  |  |  |  |
|  | 3 | **Excavation** |  | 2027-01-25 | 2027-03-20 |  |  |  |  |  |  |  |  |  |  |
| SDR-2-CON-PW-ZA-3860 |  | Excavation for Valve Chambers Section 1 | 21d | 2027-01-25 | 2027-02-17 | SDR-2-CON-PW-ZA-3850 SS |  |  |  |  | 18d | 0d | SIC- Cost [56482.5]; Plumbing Helper [191.07 h]; Labor [25.6 h]; Plumber [191.07 h]; Excavator [18 h]; Excavator Operator [238.84 h]; Un-Skilled Labor [238.84 h]; Skilled Labor [238.84 h] | 15,062.79 | Z A |
| SDR-2-CON-PW-ZA-3530 |  | Excavation for Valve Chambers Section 2 | 21d | 2027-02-18 | 2027-03-20 | SDR-2-CON-PW-ZA-3860 |  |  |  |  | 18d | 0d | SIC- Cost [56482.5]; Plumbing Helper [191.07 h]; Labor [25.6 h]; Plumber [191.07 h]; Excavator [18 h]; Excavator Operator [238.84 h]; Un-Skilled Labor [238.84 h]; Skilled Labor [238.84 h] | 15,062.79 | Z A |
|  | 1 | **bedding Works** |  | 2027-03-21 | 2027-04-10 |  |  |  |  |  |  |  |  |  |  |
| SDR-2-CON-PW-ZA-3510 |  | Sand bedding for Valve Chambers | 18d | 2027-03-21 | 2027-04-10 | SDR-2-CON-PW-ZA-3530 |  |  |  |  | 18d | 0d | SIC- Cost [23901.1]; Plumbing Helper [76.43 h]; Labor [25.6 h]; Plumber [76.43 h]; Excavator [6 h]; Excavator Operator [95.54 h]; Un-Skilled Labor [95.54 h]; Skilled Labor [95.54 h] | 20,083.72 | Z A |
|  | 4 | **Install Chambers & Valves & Fire Hydrant** |  | 2027-04-11 | 2027-05-03 |  |  |  |  |  |  |  |  |  |  |
| SDR-2-CON-PW-ZA-3540 |  | Install Chambers & Valves | 20d | 2027-04-11 | 2027-05-03 | SDR-2-CON-PW-ZA-3510 |  |  |  |  | 18d | 0d | SIC- Cost [18906.2]; Plumbing Helper [107.01 h]; Labor [25.6 h]; Plumber [107.01 h]; Excavator [16.04 h]; Excavator Operator [77.6 h]; Un-Skilled Labor [87.67 h]; Skilled Labor [87.67 h] | 90,376.7 | Z A |
|  | 2 | **Testing** |  | 2027-05-04 | 2027-05-11 |  |  |  |  |  |  |  |  |  |  |
| SDR-2-CON-PW-ZA-3520 |  | Testing for Chambers & Valves | 7d | 2027-05-04 | 2027-05-11 | SDR-2-CON-PW-ZA-3540 |  |  |  |  | 18d | 0d | SIC- Cost [23901.1]; Plumbing Helper [76.43 h]; Labor [25.6 h]; Plumber [76.43 h]; Excavator [6 h]; Excavator Operator [95.54 h]; Un-Skilled Labor [95.54 h]; Skilled Labor [95.54 h] | 20,083.72 | Z A |
|  | 6 | **Backfilling** |  | 2027-05-12 | 2027-05-30 |  |  |  |  |  |  |  |  |  |  |
| SDR-2-CON-PW-ZA-3550 |  | Backfilling for Chambers & Valves | 11d | 2027-05-12 | 2027-05-30 | SDR-2-CON-PW-ZA-3520 |  |  |  |  | 18d | 16d | SIC- Cost [1798.57]; Plumbing Helper [114.64 h]; Labor [25.6 h]; Plumber [114.64 h]; Excavator [6 h]; Excavator Operator [143.3 h]; Un-Skilled Labor [143.3 h]; Skilled Labor [143.3 h] | 40,167.42 | Z A |
|  | 7 | **PORTABLE WATER IN ( PH2-A-MCG0 )** |  | 2026-10-22 | 2027-06-10 |  |  |  |  |  |  |  |  |  |  |
|  | 7 | **Pipes Work** |  | 2026-10-22 | 2027-05-29 |  |  |  |  |  |  |  |  |  |  |
|  | 1 | **Excavation** |  | 2026-10-22 | 2027-03-20 |  |  |  |  |  |  |  |  |  |  |
| SDR-2-CON-PW-ZA-3870 |  | Excavation for PW HDPE Pipe 160 mm. Section 1 | 21d | 2026-10-22 A | 2027-02-17 | SDR-2-CON-PW-ZA-3850 SS+3d | 25% | 21d | 2027-01-19 | 2027-02-11 | 3d | 0d | SIC- Cost; Plumbing Helper [67.9 h]; Labor [38.41 h]; Plumber [67.9 h]; Excavator [50 h]; Excavator Operator [67.9 h]; Grader [60 h]; Un-Skilled Labor [67.9 h]; Skilled Labor [67.9 h] | 5,914.33 | Z A |
| SDR-2-CON-PW-ZA-3560 |  | Excavation for PW HDPE Pipe 160 mm. Section 2 | 21d | 2027-02-18 | 2027-03-20 | SDR-2-CON-PW-ZA-3870 |  |  |  |  | 19d | 0d | SIC- Cost; Plumbing Helper [67.9 h]; Labor [38.41 h]; Plumber [67.9 h]; Excavator [50 h]; Excavator Operator [67.9 h]; Grader [330 h]; Un-Skilled Labor [67.9 h]; Skilled Labor [67.9 h] | 5,914.33 | Z A |

| ID | WBS | Activity | Duration | Start | Finish | Predecessors | Total float | Free float | Resources | Cost | ZONE A |
| --- | --- | --- | --- | --- | --- | --- | --- | --- | --- | --- | --- |
|  | 3 | **bedding Works** |  | 2027-03-21 | 2027-04-12 |  |  |  |  |  |  |
| SDR-2-CON-PW-ZA-3590 |  | Sand bedding for PW HDPE Pipe 160 mm. | 20d | 2027-03-21 | 2027-04-12 | SDR-2-CON-PW-ZA-3560 | 19d | 0d | SIC- Cost [11823.1]; Plumbing Helper [76.43 h]; Compactor [140 h]; Labor [38.41 h]; Plumber [76.43 h]; Excavator [12 h]; Excavator Operator [95.54 h]; Grader [60 h]; Loader [537.49 h]; Un-Skilled Labor [95.54 h]; Skilled Labor [95.54 h] | 2,957.16 | Z A |
|  | 2 | **Pipes Laying** |  | 2027-04-13 | 2027-04-28 |  |  |  |  |  |  |
| SDR-2-CON-PW-ZA-3570 |  | Install PW 160 mm HDPE Pipe | 14d | 2027-04-13 | 2027-04-28 | SDR-2-CON-PW-ZA-3590 | 19d | 0d | SIC- Cost [38425.2]; Plumbing Helper [143.3 h]; Dump Truck [944.29 h]; Compactor [140 h]; Labor [76.81 h]; Plumber [60.61 h]; Excavator [8 h]; Excavator Operator [58.2 h]; Grader [60 h]; Loader [40 h]; Un-Skilled Labor [68.28 h]; Skilled Labor [88.43 h] | 26,614.45 | Z A |
|  | 5 | **Testing** |  | 2027-04-29 | 2027-05-08 |  |  |  |  |  |  |
| SDR-2-CON-PW-ZA-3580 |  | Testing of PW HDPE Pipe 160 mm. | 8d | 2027-04-29 | 2027-05-08 | SDR-2-CON-PW-ZA-3570 | 19d | 0d | SIC- Cost [8867.35]; Plumbing Helper [76.43 h]; Dump Truck [74 h]; Compactor [80 h]; Loader [64 h]; Labor [25.6 h]; Plumber [76.43 h]; Excavator [16 h]; Excavator Operator [95.54 h]; Grader [100 h]; Un-Skilled Labor [95.54 h]; Skilled Labor [95.54 h] | 5,914.33 | Z A |
|  | 4 | **Backfilling** |  | 2027-05-09 | 2027-05-29 |  |  |  |  |  |  |
| SDR-2-CON-PW-ZA-3600 |  | Backfilling of PW HDPE Pipe 160 mm. | 13d | 2027-05-09 | 2027-05-29 | SDR-2-CON-PW-ZA-3580 | 19d | 17d | SIC- Cost [8867.35]; Plumbing Helper [152.86 h]; Dump Truck [50 h]; Loader [40 h]; Labor [25.6 h]; Plumber [152.86 h]; Excavator [10 h]; Excavator Operator [191.07 h]; Grader [40 h]; Un-Skilled Labor [191.07 h]; Skilled Labor [191.07 h] | 11,828.64 | Z A |
|  | 3 | **Valve Chambers & Valves & Fire Hydrant** |  | 2027-02-07 | 2027-06-10 |  |  |  |  |  |  |
|  | 3 | **Excavation** |  | 2027-02-07 | 2027-04-01 |  |  |  |  |  |  |
| SDR-2-CON-PW-ZA-3880 |  | Excavation for Valve Chambers Section 1 | 21d | 2027-02-07 | 2027-03-03 | SDR-2-CON-PW-ZA-3870 SS, SDR-2-CON-ST-ZA-4650 | 8d | 0d | SIC- Cost [56482.5]; Plumbing Helper [219.73 h]; Dump Truck [380 h]; Labor [25.6 h]; Plumber [219.73 h]; Excavator [12 h]; Excavator Operator [274.67 h]; Grader [60 h]; Loader [20 h]; Un-Skilled Labor [274.67 h]; Skilled Labor [274.67 h] | 15,062.79 | Z A |
| SDR-2-CON-PW-ZA-3630 |  | Excavation for Valve Chambers Section 2 | 21d | 2027-03-04 | 2027-04-01 | SDR-2-CON-PW-ZA-3880, SDR-2-CON-PW-ZA-3560 SS | 8d | 0d | SIC- Cost [56482.5]; Plumbing Helper [219.73 h]; Dump Truck [572.76 h]; Labor [25.6 h]; Plumber [219.73 h]; Excavator [12 h]; Excavator Operator [274.67 h]; Grader [291 h]; Loader [289.8 h]; Un-Skilled Labor [274.67 h]; Skilled Labor [274.67 h] | 15,062.79 | Z A |
|  | 1 | **bedding Works** |  | 2027-04-03 | 2027-04-25 |  |  |  |  |  |  |
| SDR-2-CON-PW-ZA-3610 |  | Sand bedding for Valve Chambers | 20d | 2027-04-03 | 2027-04-25 | SDR-2-CON-PW-ZA-3630 | 8d | 0d | SIC- Cost [23901.1]; Plumbing Helper [76.43 h]; Dump Truck [183 h]; Loader [102 h]; Labor [25.6 h]; Plumber [76.43 h]; Excavator [12 h]; Excavator Operator [95.54 h]; Grader [160 h]; Un-Skilled Labor [95.54 h]; Skilled Labor [95.54 h] | 20,083.72 | Z A |
|  | 4 | **Install Chambers & Valves & Fire Hydrant** |  | 2027-04-26 | 2027-05-15 |  |  |  |  |  |  |
| SDR-2-CON-PW-ZA-3640 |  | Install Chambers & Valves | 17d | 2027-04-26 | 2027-05-15 | SDR-2-CON-PW-ZA-3610 | 8d | 0d | SIC- Cost [18906.2]; Plumbing Helper [62.61 h]; Dump Truck [40 h]; Loader [30 h]; Labor [25.6 h]; Plumber [62.61 h]; Excavator [8.12 h]; Excavator Operator [67.52 h]; Grader [63.75 h]; Un-Skilled Labor [67.52 h]; Skilled Labor [87.67 h] | 90,376.7 | Z A |
|  | 2 | **Testing** |  | 2027-05-22 | 2027-05-30 |  |  |  |  |  |  |
| SDR-2-CON-PW-ZA-3620 |  | Testing for Chambers & Valves | 8d | 2027-05-22 | 2027-05-30 | SDR-2-CON-PW-ZA-3640 | 8d | 0d | SIC- Cost [23901.1]; Plumbing Helper [76.43 h]; Dump Truck [80 h]; Loader [56 h]; Labor [25.6 h]; Plumber [76.43 h]; Excavator [6 h]; Excavator Operator [95.54 h]; Grader [150 h]; Un-Skilled Labor [95.54 h]; Skilled Labor [95.54 h] | 20,083.72 | Z A |
|  | 6 | **Backfilling** |  | 2027-05-31 | 2027-06-10 |  |  |  |  |  |  |
| SDR-2-CON-PW-ZA-3650 |  | Backfilling for Chambers & Valves | 10d | 2027-05-31 | 2027-06-10 | SDR-2-CON-PW-ZA-3620 | 8d | 6d | SIC- Cost [1798.57]; Plumbing Helper [124.2 h]; Dump Truck [50 h]; Loader [40 h]; Labor [25.6 h]; Plumber [124.2 h]; Excavator [6 h]; Excavator Operator [155.25 h]; Grader [60 h]; Un-Skilled Labor [155.25 h]; Skilled Labor [155.25 h] | 40,167.42 | Z A |
|  | 8 | **PORTABLE WATER IN ( PH2-A-MCH0 )** |  | 2027-01-25 | 2027-05-27 |  |  |  |  |  |  |
|  | 7 | **Pipes Work** |  | 2027-01-25 | 2027-05-27 |  |  |  |  |  |  |
|  | 1 | **Excavation** |  | 2027-01-25 | 2027-03-20 |  |  |  |  |  |  |
| SDR-2-CON-PW-ZA-3890 |  | Excavation for PW HDPE Pipe 225 mm. Section 1 | 21d | 2027-01-25 | 2027-02-17 | SDR-2-CON-PW-ZA-3870 SS+3d | 3d | 0d | SIC- Cost [38897.9]; Plumbing Helper [135.79 h]; Dump Truck [400 h]; Loader [80 h]; Labor [38.41 h]; Plumber [135.79 h]; Excavator [12.75 h]; Excavator Operator [135.79 h]; Grader [110 h]; Un-Skilled Labor [135.79 h]; Skilled Labor [135.79 h] | 19,451.69 | Z A |
| SDR-2-CON-PW-ZA-2810 |  | Excavation for PW HDPE Pipe 225 mm. Section 2 | 21d | 2027-02-18 | 2027-03-20 | SDR-2-CON-PW-ZA-3890 | 3d | 0d | SIC- Cost [38897.9]; Plumbing Helper [135.79 h]; Dump Truck [500 h]; Loader [195.44 h]; Labor [38.41 h]; Plumber [135.79 h]; Excavator [12.75 h]; Excavator Operator [135.79 h]; Grader [220 h]; Un-Skilled Labor [135.79 h]; Skilled Labor [135.79 h] | 19,451.69 | Z A |

| ID | WBS | Activity | Duration | Start | Finish | Predecessors | Complete | Remaining | Planned start | Planned finish | Total float | Free float | Resources | Cost | ZONE A |
| --- | --- | --- | --- | --- | --- | --- | --- | --- | --- | --- | --- | --- | --- | --- | --- |
|  | 3 | **bedding Works** |  | 2027-03-21 | 2027-04-12 |  |  |  |  |  |  |  |  |  |  |
| SDR-2-CON-PW-ZA-2840 |  | Sand bedding for PW HDPE Pipe 225 mm. | 20d | 2027-03-21 | 2027-04-12 | SDR-2-CON-PW-ZA-2810 |  |  |  |  | 3d | 0d | SIC- Cost [38897.9]; Plumbing Helper [76.43 h]; Dump Truck [338 h]; Loader [40 h]; Labor [38.41 h]; Plumber [76.43 h]; Excavator [12 h]; Excavator Operator [95.54 h]; Grader [168.75 h]; Un-Skilled Labor [95.54 h]; Skilled Labor [95.54 h] | 9,725.85 | Z A |
|  | 2 | **Pipes Laying** |  | 2027-04-13 | 2027-04-29 |  |  |  |  |  |  |  |  |  |  |
| SDR-2-CON-PW-ZA-2820 |  | Install PW 225 mm HDPE Pipe | 15d | 2027-04-13 | 2027-04-29 | SDR-2-CON-PW-ZA-2840 |  |  |  |  | 3d | 0d | SIC- Cost [126418]; Plumbing Helper [40.13 h]; Dump Truck [40 h]; Loader [30 h]; Labor [76.81 h]; Plumber [40.13 h]; Excavator [6 h]; Excavator Operator [68.28 h]; Grader [40 h]; Un-Skilled Labor [68.28 h]; Skilled Labor [78.35 h] | 87,532.6 | Z A |
|  | 5 | **Testing** |  | 2027-05-01 | 2027-05-08 |  |  |  |  |  |  |  |  |  |  |
| SDR-2-CON-PW-ZA-2830 |  | Testing of PW HDPE Pipe 225 mm. | 7d | 2027-05-01 | 2027-05-08 | SDR-2-CON-PW-ZA-2820 |  |  |  |  | 3d | 0d | SIC- Cost [29173.4]; Plumbing Helper [66.88 h]; Dump Truck [90 h]; Loader [46 h]; Labor [25.6 h]; Plumber [66.88 h]; Excavator [12 h]; Excavator Operator [83.59 h]; Grader [47.5 h]; Un-Skilled Labor [83.59 h]; Skilled Labor [83.59 h] | 19,451.69 | Z A |
|  | 4 | **Backfilling** |  | 2027-05-09 | 2027-05-27 |  |  |  |  |  |  |  |  |  |  |
| SDR-2-CON-PW-ZA-2850 |  | Backfilling of PW HDPE Pipe 225 mm. | 12d | 2027-05-09 | 2027-05-27 | SDR-2-CON-PW-ZA-2830 |  |  |  |  | 20d | 18d | SIC- Cost [29173.4]; Plumbing Helper [171.96 h]; Dump Truck [50 h]; Loader [40 h]; Labor [25.6 h]; Plumber [171.96 h]; Excavator [6 h]; Excavator Operator [214.96 h]; Grader [40 h]; Un-Skilled Labor [214.96 h]; Skilled Labor [214.96 h] | 38,903.37 | Z A |
|  | 3 | **Valve Chambers & Valves & Fire Hydrant** |  | 2027-01-25 | 2027-05-27 |  |  |  |  |  |  |  |  |  |  |
|  | 3 | **Excavation** |  | 2027-01-25 | 2027-03-20 |  |  |  |  |  |  |  |  |  |  |
| SDR-2-CON-PW-ZA-3900 |  | Excavation for Valve Chambers Section 1 | 21d | 2027-01-25 | 2027-02-17 | SDR-2-CON-PW-ZA-3890 SS, SDR-2-CON-RW-ZA-2510 |  |  |  |  | 3d | 0d | SIC- Cost [56482.5]; Plumbing Helper [152.86 h]; Dump Truck [400 h]; Loader [80 h]; Labor [25.6 h]; Plumber [152.86 h]; Excavator [12.9 h]; Excavator Operator [191.07 h]; Grader [110 h]; Un-Skilled Labor [191.07 h]; Skilled Labor [191.07 h] | 15,062.79 | Z A |
| SDR-2-CON-PW-ZA-2880 |  | Excavation for Valve Chambers Section 2 | 21d | 2027-02-18 | 2027-03-20 | SDR-2-CON-PW-ZA-3900 |  |  |  |  | 3d | 0d | SIC- Cost [56482.5]; Plumbing Helper [152.86 h]; Dump Truck [600 h]; Loader [210 h]; Labor [25.6 h]; Plumber [152.86 h]; Excavator [12.9 h]; Excavator Operator [191.07 h]; Grader [220 h]; Un-Skilled Labor [191.07 h]; Skilled Labor [191.07 h] | 15,062.79 | Z A |
|  | 1 | **bedding Works** |  | 2027-03-21 | 2027-04-12 |  |  |  |  |  |  |  |  |  |  |
| SDR-2-CON-PW-ZA-2860 |  | Sand bedding for Valve Chambers | 20d | 2027-03-21 | 2027-04-12 | SDR-2-CON-PW-ZA-2880 |  |  |  |  | 3d | 0d | SIC- Cost [23901.1]; Plumbing Helper [95.54 h]; Dump Truck [362 h]; Loader [50 h]; Labor [25.6 h]; Plumber [95.54 h]; Excavator [12 h]; Excavator Operator [119.42 h]; Grader [93.75 h]; Un-Skilled Labor [119.42 h]; Skilled Labor [119.42 h] | 20,083.72 | Z A |
|  | 4 | **Install Chambers & Valves & Fire Hydrant** |  | 2027-04-13 | 2027-04-29 |  |  |  |  |  |  |  |  |  |  |
| SDR-2-CON-PW-ZA-2890 |  | Install Chambers & Valves | 15d | 2027-04-13 | 2027-04-29 | SDR-2-CON-PW-ZA-2860 |  |  |  |  | 3d | 0d | SIC- Cost [18906.2]; Plumbing Helper [40.13 h]; Dump Truck [40 h]; Loader [40 h]; Labor [25.6 h]; Plumber [40.13 h]; Excavator [8 h]; Excavator Operator [70.14 h]; Grader [60 h]; Un-Skilled Labor [70.14 h]; Skilled Labor [80.22 h] | 90,376.7 | Z A |
|  | 2 | **Testing** |  | 2027-05-01 | 2027-05-08 |  |  |  |  |  |  |  |  |  |  |
| SDR-2-CON-PW-ZA-2870 |  | Testing for Chambers & Valves | 7d | 2027-05-01 | 2027-05-08 | SDR-2-CON-RW-ZA-2550, SDR-2-CON-PW-ZA-2890 |  |  |  |  | 3d | 0d | SIC- Cost [23901.1]; Plumbing Helper [76.43 h]; Dump Truck [80 h]; Loader [44 h]; Labor [25.6 h]; Plumber [76.43 h]; Excavator [6 h]; Excavator Operator [95.54 h]; Grader [147 h]; Un-Skilled Labor [95.54 h]; Skilled Labor [95.54 h] | 20,083.72 | Z A |
|  | 6 | **Backfilling** |  | 2027-05-09 | 2027-05-27 |  |  |  |  |  |  |  |  |  |  |
| SDR-2-CON-PW-ZA-2900 |  | Backfilling for Chambers & Valves | 12d | 2027-05-09 | 2027-05-27 | SDR-2-CON-PW-ZA-2870 |  |  |  |  | 20d | 18d | SIC- Cost [1798.57]; Plumbing Helper [105.09 h]; Dump Truck [110 h]; Loader [40 h]; Labor [25.6 h]; Plumber [105.09 h]; Excavator [6 h]; Excavator Operator [131.36 h]; Grader [67.5 h]; Un-Skilled Labor [131.36 h]; Skilled Labor [131.36 h] | 40,167.42 | Z A |
|  | 9 | **PORTABLE WATER IN ( PH2-ART-MC00 )** |  | 2026-09-14 | 2027-05-29 |  |  |  |  |  |  |  |  |  |  |
|  | 7 | **Pipes Work** |  | 2026-09-14 | 2027-04-28 |  |  |  |  |  |  |  |  |  |  |
|  | 1 | **Excavation** |  | 2026-09-14 | 2027-02-21 |  |  |  |  |  |  |  |  |  |  |
| SDR-2-CON-PW-ZA-3910 |  | Excavation for PW HDPE Pipes 315 mm Section 1 | 21d | 2026-09-14 A | 2026-09-30 A | SDR-2-CON-PW-ZA-3890 SS+3d | 100% |  | 2027-01-09 | 2027-02-01 |  |  | SIC- Cost; Plumbing Helper [67.9 h]; Dump Truck [400 h]; Loader [80 h]; Labor [38.41 h]; Plumber [67.9 h]; Excavator [20.55 h]; Excavator Operator [67.9 h]; Grader [285 h]; Un-Skilled Labor [67.9 h]; Skilled Labor [67.9 h] | 41,173.52 |  |
| SDR-2-CON-PW-ZA-2360 |  | Excavation for PW HDPE Pipes 315 mm Section 2 | 21d | 2026-10-01 A | 2027-02-21 | SDR-2-CON-PW-ZA-3910 | 25% | 21d | 2027-01-09 | 2027-02-01 | 11d | 0d | SIC- Cost; Plumbing Helper [67.9 h]; Dump Truck [600 h]; Loader [180 h]; Labor [38.41 h]; Plumber [67.9 h]; Excavator [20.55 h]; Excavator Operator [67.9 h]; Grader [120 h]; Un-Skilled Labor [67.9 h]; Skilled Labor [67.9 h] | 41,173.52 |  |

| ID | WBS | Activity | Duration | Start | Finish | Predecessors | Complete | Remaining | Planned start | Planned finish | Total float | Free float | Resources | Cost | ZONE A |
| --- | --- | --- | --- | --- | --- | --- | --- | --- | --- | --- | --- | --- | --- | --- | --- |
|  | 8 | **bedding Works** |  | 2027-02-23 | 2027-03-22 |  |  |  |  |  |  |  |  |  |  |
| SDR-2-CON-PW-ZA-2440 |  | Sand bedding for PW HDPE Pipes 315 mm | 20d | 2027-02-23 | 2027-03-22 | SDR-2-CON-PW-ZA-2360 |  |  |  |  | 11d | 0d | SIC- Cost [82341.5]; Plumbing Helper [95.54 h]; Dump Truck [239 h]; Loader [40 h]; Labor [38.41 h]; Plumber [95.54 h]; Excavator [6 h]; Excavator Operator [119.42 h]; Grader [322 h]; Un-Skilled Labor [119.42 h]; Skilled Labor [119.42 h] | 20,586.76 |  |
|  | 2 | **Pipes Laying** |  | 2027-03-23 | 2027-04-11 |  |  |  |  |  |  |  |  |  |  |
| SDR-2-CON-PW-ZA-2370 |  | Install PW 315 mm HDPE Pipe | 17d | 2027-03-23 | 2027-04-11 | SDR-2-CON-RW-ZA-2690, SDR-2-CON-PW-ZA-2440 |  |  |  |  | 11d | 0d | SIC- Cost [267610]; Plumbing Helper [40.13 h]; Dump Truck [89.64 h]; Loader [41.33 h]; Labor [76.81 h]; Plumber [40.13 h]; Excavator [12 h]; Excavator Operator [110.45 h]; Grader [57 h]; Un-Skilled Labor [110.45 h]; Skilled Labor [120.53 h] | 185,280.81 |  |
|  | 5 | **Testing** |  | 2027-04-12 | 2027-04-19 |  |  |  |  |  |  |  |  |  |  |
| SDR-2-CON-PW-ZA-2430 |  | Testing of PW HDPE Pipe 315 mm. | 7d | 2027-04-12 | 2027-04-19 | SDR-2-CON-PW-ZA-2370 |  |  |  |  | 11d | 0d | SIC- Cost [61756.1]; Plumbing Helper [76.43 h]; Dump Truck [50 h]; Loader [40 h]; Labor [25.6 h]; Plumber [76.43 h]; Excavator [16 h]; Excavator Operator [95.54 h]; Grader [40 h]; Un-Skilled Labor [95.54 h]; Skilled Labor [95.54 h] | 41,173.51 |  |
|  | 9 | **Backfilling** |  | 2027-04-20 | 2027-04-28 |  |  |  |  |  |  |  |  |  |  |
| SDR-2-CON-PW-ZA-2450 |  | Backfilling of PW HDPE Pipe 315 mm. | 8d | 2027-04-20 | 2027-04-28 | SDR-2-CON-PW-ZA-2430 |  |  |  |  | 11d |  | SIC- Cost [61756.1]; Plumbing Helper [152.86 h]; Dump Truck [50 h]; Loader [40 h]; Labor [25.6 h]; Plumber [152.86 h]; Excavator [10 h]; Excavator Operator [191.07 h]; Grader [60 h]; Un-Skilled Labor [191.07 h]; Skilled Labor [191.07 h] | 82,347.03 |  |
|  | 3 | **Valve Chambers & Valves & Fire Hydrant** |  | 2027-01-28 | 2027-05-29 |  |  |  |  |  |  |  |  |  |  |
|  | 3 | **Excavation** |  | 2027-01-28 | 2027-03-23 |  |  |  |  |  |  |  |  |  |  |
| SDR-2-CON-PW-ZA-3920 |  | Excavation for Valve Chambers Section 1 | 21d | 2027-01-28 | 2027-02-21 | SDR-2-CON-PW-ZA-3910 SS |  |  |  |  | 19d | 0d | SIC- Cost [56482.5]; Plumbing Helper [143.3 h]; Dump Truck [400 h]; Loader [80 h]; Labor [25.6 h]; Plumber [143.3 h]; Excavator [18 h]; Excavator Operator [179.13 h]; Grader [285 h]; Un-Skilled Labor [179.13 h]; Skilled Labor [179.13 h] | 15,062.79 |  |
| SDR-2-CON-PW-ZA-2400 |  | Excavation for Valve Chambers Section 2 | 21d | 2027-02-23 | 2027-03-23 | SDR-2-CON-PW-ZA-3920 |  |  |  |  | 19d | 0d | SIC- Cost [56482.5]; Plumbing Helper [143.3 h]; Dump Truck [600 h]; Loader [116.6 h]; Labor [25.6 h]; Plumber [143.3 h]; Excavator [18 h]; Excavator Operator [179.13 h]; Grader [120 h]; Un-Skilled Labor [179.13 h]; Skilled Labor [179.13 h] | 15,062.79 |  |
|  | 1 | **bedding Works** |  | 2027-03-24 | 2027-04-15 |  |  |  |  |  |  |  |  |  |  |
| SDR-2-CON-PW-ZA-2380 |  | Sand bedding for Valve Chambers | 20d | 2027-03-24 | 2027-04-15 | SDR-2-CON-PW-ZA-2400 |  |  |  |  | 19d | 0d | SIC- Cost [23901.1]; Plumbing Helper [95.54 h]; Dump Truck [239 h]; Loader [118 h]; Labor [25.6 h]; Plumber [95.54 h]; Excavator [6 h]; Excavator Operator [119.42 h]; Grader [60 h]; Un-Skilled Labor [119.42 h]; Skilled Labor [119.42 h] | 20,083.72 |  |
|  | 4 | **Install Chambers & Valves & Fire Hydrant** |  | 2027-04-17 | 2027-05-04 |  |  |  |  |  |  |  |  |  |  |
| SDR-2-CON-PW-ZA-2410 |  | Install Chambers & Valves | 16d | 2027-04-17 | 2027-05-04 | SDR-2-CON-PW-ZA-2380 |  |  |  |  | 19d | 0d | SIC- Cost [18906.2]; Plumbing Helper [40.13 h]; Dump Truck [74 h]; Loader [41.33 h]; Labor [25.6 h]; Plumber [40.13 h]; Excavator [12 h]; Excavator Operator [114.18 h]; Grader [57 h]; Un-Skilled Labor [114.18 h]; Skilled Labor [214.96 h] | 90,376.7 |  |
|  | 2 | **Testing** |  | 2027-05-05 | 2027-05-13 |  |  |  |  |  |  |  |  |  |  |
| SDR-2-CON-PW-ZA-2390 |  | Testing for Chambers & Valves | 8d | 2027-05-05 | 2027-05-13 | SDR-2-CON-PW-ZA-2410 |  |  |  |  | 19d | 0d | SIC- Cost [23901.1]; Plumbing Helper [76.43 h]; Dump Truck [50 h]; Loader [40 h]; Labor [25.6 h]; Plumber [76.43 h]; Excavator [12 h]; Excavator Operator [95.54 h]; Grader [40 h]; Un-Skilled Labor [95.54 h]; Skilled Labor [95.54 h] | 20,083.72 |  |
|  | 6 | **Backfilling** |  | 2027-05-15 | 2027-05-29 |  |  |  |  |  |  |  |  |  |  |
| SDR-2-CON-PW-ZA-2420 |  | Backfilling for Chambers & Valves | 8d | 2027-05-15 | 2027-05-29 | SDR-2-CON-PW-ZA-2390 |  |  |  |  | 19d | 17d | SIC- Cost [1798.57]; Plumbing Helper [152.86 h]; Dump Truck [50 h]; Loader [40 h]; Labor [25.6 h]; Plumber [152.86 h]; Excavator [6 h]; Excavator Operator [191.07 h]; Grader [60 h]; Un-Skilled Labor [191.07 h]; Skilled Labor [191.07 h] | 40,167.42 |  |
|  | 10 | **PORTABLE WATER IN ( PH2-ART-MC10 )** |  | 2026-09-24 | 2027-06-12 |  |  |  |  |  |  |  |  |  |  |
|  | 7 | **Pipes Work** |  | 2026-09-24 | 2027-06-12 |  |  |  |  |  |  |  |  |  |  |
|  | 1 | **Excavation** |  | 2026-09-24 | 2027-02-21 |  |  |  |  |  |  |  |  |  |  |
| SDR-2-CON-PW-ZA-3930 |  | Excavation for PW HDPE Pipes 315 mm Section 1 | 21d | 2026-09-24 A | 2027-01-27 | SDR-2-CON-PW-ZA-3910 FF+2d | 40% | 21d | 2027-01-04 | 2027-01-27 | 21d | 0d | SIC- Cost; Plumbing Helper [67.9 h]; Labor [38.41 h]; Plumber [67.9 h]; Excavator [12 h]; Excavator Operator [67.9 h]; Un-Skilled Labor [67.9 h]; Skilled Labor [67.9 h] | 41,173.52 | Z A |
| SDR-2-CON-PW-ZA-2460 |  | Excavation for PW HDPE Pipes 315 mm Section 2 | 21d | 2026-10-03 A | 2027-02-21 | SDR-2-CON-PW-ZA-3930 | 10% | 21d | 2027-01-12 | 2027-02-04 | 21d | 0d | SIC- Cost; Plumbing Helper [67.9 h]; Labor [38.41 h]; Plumber [67.9 h]; Excavator [12 h]; Excavator Operator [67.9 h]; Un-Skilled Labor [67.9 h]; Skilled Labor [67.9 h] | 41,173.52 | Z A |

| ID | WBS | Activity | Duration | Start | Finish | Predecessors | Complete | Remaining | Planned start | Planned finish | Total float | Free float | Resources | Cost | ZONE A | ZONE G |
| --- | --- | --- | --- | --- | --- | --- | --- | --- | --- | --- | --- | --- | --- | --- | --- | --- |
|  | 8 | **bedding Works** |  | 2026-10-03 | 2027-03-22 |  |  |  |  |  |  |  |  |  |  |  |
| SDR-2-CON-PW-ZA-2540 |  | Sand bedding for PW HDPE Pipes 315 mm | 20d | 2026-10-03 A | 2027-03-22 | SDR-2-CON-PW-ZA-2460 | 20% | 20d | 2027-02-06 | 2027-03-01 | 21d | 0d | SIC- Cost; Plumbing Helper [67.9 h]; Labor [38.41 h]; Plumber [114.64 h]; Excavator [12 h]; Excavator Operator [67.9 h]; Un-Skilled Labor [143.3 h]; Skilled Labor [143.3 h] | 20,586.76 | Z A |  |
|  | 2 | **Pipes Laying** |  | 2026-10-03 | 2027-04-08 |  |  |  |  |  |  |  |  |  |  |  |
| SDR-2-CON-PW-ZA-2470 |  | Install PW 315 mm HDPE Pipe | 15d | 2026-10-03 A | 2027-04-08 | SDR-2-CON-PW-ZA-2540 | 20% | 15d | 2027-03-30 | 2027-04-15 | 21d | 0d | SIC- Cost [267610]; Plumbing Helper [40.13 h]; Labor [76.81 h]; Plumber [40.13 h]; Excavator [10.5 h]; Excavator Operator [114.18 h]; Un-Skilled Labor [114.18 h]; Skilled Labor [124.26 h] | 185,280.81 | Z A |  |
|  | 5 | **Testing** |  | 2027-04-10 | 2027-04-17 |  |  |  |  |  |  |  |  |  |  |  |
| SDR-2-CON-PW-ZA-2530 |  | Testing of PW HDPE Pipe 315 mm. | 7d | 2027-04-10 | 2027-04-17 | SDR-2-CON-PW-ZA-2470 |  |  |  |  | 21d |  | SIC- Cost [61756.1]; Plumbing Helper [76.43 h]; Labor [25.6 h]; Plumber [76.43 h]; Excavator [6 h]; Excavator Operator [95.54 h]; Un-Skilled Labor [95.54 h]; Skilled Labor [95.54 h] | 41,173.51 | Z A |  |
|  | 9 | **Backfilling** |  | 2027-06-01 | 2027-06-12 |  |  |  |  |  |  |  |  |  |  |  |
| SDR-2-CON-PW-ZA-2550 |  | Backfilling of PW HDPE Pipe 315 mm. | 10d | 2027-06-01 | 2027-06-12 | SDR-2-CON-PW-ZA-2230, SDR-2-CON-PW-ZA-2530 |  |  |  |  | 7d | 5d | SIC- Cost [61756.1]; Plumbing Helper [152.86 h]; Labor [25.6 h]; Plumber [152.86 h]; Excavator [6 h]; Excavator Operator [191.07 h]; Un-Skilled Labor [191.07 h]; Skilled Labor [191.07 h] | 82,347.03 | Z A |  |
|  | 3 | **Valve Chambers & Valves & Fire Hydrant** |  | 2027-02-01 | 2027-06-02 |  |  |  |  |  |  |  |  |  |  |  |
|  | 3 | **Excavation** |  | 2027-02-01 | 2027-03-28 |  |  |  |  |  |  |  |  |  |  |  |
| SDR-2-CON-PW-ZA-3940 |  | Excavation for Valve Chambers Section 1 | 21d | 2027-02-01 | 2027-02-27 | SDR-2-CON-PW-ZA-3930 SS, SDR-2-CON-TE-ZA-1060, SDR-2-CON-MV-ZA-1260, SDR-2-CON-MV-ZA-1220 |  |  |  |  | 15.74d | 0d | SIC- Cost [56482.5]; Plumbing Helper [191.07 h]; Labor [25.6 h]; Plumber [191.07 h]; Excavator [12 h]; Excavator Operator [238.84 h]; Un-Skilled Labor [238.84 h]; Skilled Labor [238.84 h] | 15,062.79 | Z A |  |
| SDR-2-CON-PW-ZA-2500 |  | Excavation for Valve Chambers Section 2 | 21d | 2027-02-27 | 2027-03-28 | SDR-2-CON-PW-ZA-3940 |  |  |  |  | 15.74d | 0d | SIC- Cost [56482.5]; Plumbing Helper [191.07 h]; Labor [25.6 h]; Plumber [191.07 h]; Excavator [12 h]; Excavator Operator [238.84 h]; Un-Skilled Labor [238.84 h]; Skilled Labor [238.84 h] | 15,062.79 | Z A |  |
|  | 1 | **bedding Works** |  | 2027-03-28 | 2027-04-20 |  |  |  |  |  |  |  |  |  |  |  |
| SDR-2-CON-PW-ZA-2480 |  | Sand bedding for Valve Chambers | 20d | 2027-03-28 | 2027-04-20 | SDR-2-CON-PW-ZA-2500 |  |  |  |  | 15.74d | 0d | SIC- Cost [23901.1]; Plumbing Helper [76.43 h]; Labor [25.6 h]; Plumber [76.43 h]; Excavator [12 h]; Excavator Operator [95.54 h]; Un-Skilled Labor [95.54 h]; Skilled Labor [95.54 h] | 20,083.72 | Z A |  |
|  | 4 | **Install Chambers & Valves & Fire Hydrant** |  | 2027-04-20 | 2027-05-06 |  |  |  |  |  |  |  |  |  |  |  |
| SDR-2-CON-PW-ZA-2510 |  | Install Chambers & Valves | 14d | 2027-04-20 | 2027-05-06 | SDR-2-CON-PW-ZA-2480 |  |  |  |  | 15.74d | 0d | SIC- Cost [18906.2]; Plumbing Helper [40.13 h]; Labor [25.6 h]; Plumber [40.13 h]; Excavator [8.25 h]; Excavator Operator [127.99 h]; Un-Skilled Labor [127.99 h]; Skilled Labor [138.07 h] | 90,376.7 | Z A |  |
|  | 2 | **Testing** |  | 2027-05-06 | 2027-05-22 |  |  |  |  |  |  |  |  |  |  |  |
| SDR-2-CON-PW-ZA-2490 |  | Testing for Chambers & Valves | 8d | 2027-05-06 | 2027-05-22 | SDR-2-CON-PW-ZA-2510 |  |  |  |  | 15.74d | 0d | SIC- Cost [23901.1]; Plumbing Helper [76.43 h]; Labor [25.6 h]; Plumber [76.43 h]; Excavator [6 h]; Excavator Operator [95.54 h]; Un-Skilled Labor [95.54 h]; Skilled Labor [95.54 h] | 20,083.72 | Z A |  |
|  | 6 | **Backfilling** |  | 2027-05-22 | 2027-06-02 |  |  |  |  |  |  |  |  |  |  |  |
| SDR-2-CON-PW-ZA-2520 |  | Backfilling for Chambers & Valves | 10d | 2027-05-22 | 2027-06-02 | SDR-2-CON-PW-ZA-2490 |  |  |  |  | 15.74d | 13.74d | SIC- Cost [1798.57]; Plumbing Helper [143.3 h]; Dump Truck [50 h]; Labor [25.6 h]; Plumber [143.3 h]; Excavator [6 h]; Excavator Operator [179.13 h]; Grader [60 h]; Un-Skilled Labor [179.13 h]; Skilled Labor [179.13 h] | 40,167.42 | Z A |  |
|  | ZG | **ZONE G** |  | 2026-05-06 | 2027-05-27 |  |  |  |  |  |  |  |  |  |  |  |
|  | 1 | **PORTABLE WATER IN ( PH2-G-MCA0 )** |  | 2026-05-06 | 2027-02-20 |  |  |  |  |  |  |  |  |  |  |  |
|  | 7 | **Pipes Work** |  | 2026-05-06 | 2026-11-26 |  |  |  |  |  |  |  |  |  |  |  |
|  | 1 | **Excavation** |  | 2026-05-06 | 2026-08-20 |  |  |  |  |  |  |  |  |  |  |  |
| SDR-2-CON-PW-ZG-1520 |  | Excavation for PW HDPE Pipes 400 mm Section 1 | 21d | 2026-05-06 A | 2026-05-24 A | SDR-2-CON-TS-ZA-2300 SS | 100% |  | 2027-01-18 | 2027-02-10 |  |  | SIC- Cost; Plumbing Helper [135.79 h]; Labor [38.41 h]; Plumber [135.79 h]; Excavator [18 h]; Excavator Operator [135.79 h]; Un-Skilled Labor [135.79 h]; Skilled Labor [135.79 h] | 84,474.36 |  | Z G |
| SDR-2-CON-PW-ZG-1000 |  | Excavation for PW HDPE Pipes 400 mm Section 2 | 21d | 2026-06-22 A | 2026-08-20 A | SDR-2-CON-PW-ZG-1520 | 100% |  | 2027-02-11 | 2027-03-08 |  |  | SIC- Cost; Plumbing Helper [135.79 h]; Labor [38.41 h]; Plumber [135.79 h]; Excavator [18 h]; Excavator Operator [135.79 h]; Un-Skilled Labor [135.79 h]; Skilled Labor [135.79 h] | 84,474.36 |  | Z G |

| ID | WBS | Activity | Duration | Start | Finish | Predecessors | Complete | Remaining | Planned start | Planned finish | Total float | Free float | Resources | Cost | ZONE G |
| --- | --- | --- | --- | --- | --- | --- | --- | --- | --- | --- | --- | --- | --- | --- | --- |
|  | 3 | **bedding Works** |  | 2026-08-01 | 2026-11-01 |  |  |  |  |  |  |  |  |  |  |
| SDR-2-CON-PW-ZG-1500 |  | Sand bedding for PW HDPE Pipes 400 mm | 16d | 2026-08-01 A | 2026-11-01 | SDR-2-CON-PW-ZG-1000 | 92% | 1d | 2027-03-14 | 2027-03-31 | 137d | 0d | SIC- Cost [168943]; Plumbing Helper [95.54 h]; Labor [38.41 h]; Plumber [95.54 h]; Excavator [6 h]; Excavator Operator [119.42 h]; Un-Skilled Labor [119.42 h]; Skilled Labor [119.42 h] | 42,237.18 | Z G |
|  | 2 | **Pipes Laying** |  | 2026-08-13 | 2026-11-01 |  |  |  |  |  |  |  |  |  |  |
| SDR-2-CON-PW-ZG-1010 |  | Install PW 400 mm HDPE Pipe | 16d | 2026-08-13 A | 2026-11-01 | SDR-2-CON-PW-ZG-1500 FF | 92% | 1d | 2027-04-01 | 2027-04-19 | 137d | 0d | SIC- Cost [549065]; Plumbing Helper [40.13 h]; Labor [76.81 h]; Plumber [40.13 h]; Excavator [8 h]; Excavator Operator [70.14 h]; Un-Skilled Labor [70.14 h]; Skilled Labor [70.14 h] | 380,134.58 | Z G |
|  | 5 | **Testing** |  | 2026-11-02 | 2026-11-12 |  |  |  |  |  |  |  |  |  |  |
| SDR-2-CON-PW-ZG-1080 |  | Testing of PW HDPE Pipe 400 mm. | 10d | 2026-11-02 | 2026-11-12 | SDR-2-CON-PW-ZG-1010 |  |  |  |  | 137d | 0d | SIC- Cost [126707]; Plumbing Helper [76.43 h]; Labor [25.6 h]; Plumber [76.43 h]; Excavator [12 h]; Excavator Operator [95.54 h]; Un-Skilled Labor [95.54 h]; Skilled Labor [95.54 h] | 84,474.36 | Z G |
|  | 4 | **Backfilling** |  | 2026-11-14 | 2026-11-26 |  |  |  |  |  |  |  |  |  |  |
| SDR-2-CON-PW-ZG-1510 |  | Backfilling of PW HDPE Pipe 400 mm. | 12d | 2026-11-14 | 2026-11-26 | SDR-2-CON-PW-ZG-1080 |  |  |  |  | 137d |  | SIC- Cost [126707]; Plumbing Helper [152.86 h]; Labor [25.6 h]; Plumber [152.86 h]; Excavator [6 h]; Excavator Operator [191.07 h]; Un-Skilled Labor [191.07 h]; Skilled Labor [191.07 h] | 168,948.7 | Z G |
|  | 3 | **Valve Chambers & Valves & Fire Hydrant** |  | 2026-11-01 | 2027-02-20 |  |  |  |  |  |  |  |  |  |  |
|  | 3 | **Excavation** |  | 2026-11-01 | 2026-12-19 |  |  |  |  |  |  |  |  |  |  |
| SDR-2-CON-PW-ZA-3950 |  | Excavation for Valve Chambers Section 1 | 21d | 2026-11-01 | 2026-11-24 | SDR-2-CON-PW-ZG-1520 SS |  |  |  |  | 64d | 0d | SIC- Cost [56482.5]; Plumbing Helper [171.96 h]; Labor [25.6 h]; Plumber [171.96 h]; Excavator [18 h]; Excavator Operator [214.96 h]; Un-Skilled Labor [214.96 h]; Skilled Labor [214.96 h] | 15,062.79 | Z G |
| SDR-2-CON-PW-ZA-3680 |  | Excavation for Valve Chambers Section 2 | 21d | 2026-11-25 | 2026-12-19 | SDR-2-CON-PW-ZA-3950 |  |  |  |  | 64d | 0d | SIC- Cost [56482.5]; Plumbing Helper [171.96 h]; Labor [25.6 h]; Plumber [171.96 h]; Excavator [18 h]; Excavator Operator [214.96 h]; Un-Skilled Labor [214.96 h]; Skilled Labor [214.96 h] | 15,062.79 | Z G |
|  | 1 | **bedding Works** |  | 2026-12-20 | 2027-01-09 |  |  |  |  |  |  |  |  |  |  |
| SDR-2-CON-PW-ZA-3660 |  | Sand bedding for Valve Chambers | 18d | 2026-12-20 | 2027-01-09 | SDR-2-CON-PW-ZA-3680 |  |  |  |  | 64d | 0d | SIC- Cost [23901.1]; Plumbing Helper [76.43 h]; Labor [25.6 h]; Plumber [76.43 h]; Excavator [6 h]; Excavator Operator [95.54 h]; Un-Skilled Labor [95.54 h]; Skilled Labor [95.54 h] | 20,083.72 | Z G |
|  | 4 | **Install Chambers & Valves & Fire Hydrant** |  | 2027-01-10 | 2027-01-27 |  |  |  |  |  |  |  |  |  |  |
| SDR-2-CON-PW-ZA-3690 |  | Install Chambers & Valves | 16d | 2027-01-10 | 2027-01-27 | SDR-2-CON-PW-ZA-3660 |  |  |  |  | 64d | 0d | SIC- Cost [18906.2]; Plumbing Helper [152.86 h]; Labor [25.6 h]; Plumber [40.13 h]; Excavator [8 h]; Excavator Operator [60.06 h]; Un-Skilled Labor [70.14 h]; Skilled Labor [90.29 h] | 90,376.7 | Z G |
|  | 2 | **Testing** |  | 2027-01-28 | 2027-02-08 |  |  |  |  |  |  |  |  |  |  |
| SDR-2-CON-PW-ZA-3670 |  | Testing for Chambers & Valves | 10d | 2027-01-28 | 2027-02-08 | SDR-2-CON-PW-ZA-3690 |  |  |  |  | 64d | 0d | SIC- Cost [23901.1]; Plumbing Helper [66.88 h]; Labor [25.6 h]; Plumber [66.88 h]; Excavator [12 h]; Excavator Operator [83.59 h]; Un-Skilled Labor [83.59 h]; Skilled Labor [83.59 h] | 20,083.72 | Z G |
|  | 6 | **Backfilling** |  | 2027-02-09 | 2027-02-20 |  |  |  |  |  |  |  |  |  |  |
| SDR-2-CON-PW-ZA-3700 |  | Backfilling for Chambers & Valves | 10d | 2027-02-09 | 2027-02-20 | SDR-2-CON-PW-ZA-3670 |  |  |  |  | 64d |  | SIC- Cost [1798.57]; Plumbing Helper [124.2 h]; Labor [25.6 h]; Plumber [124.2 h]; Excavator [6 h]; Excavator Operator [155.25 h]; Un-Skilled Labor [155.25 h]; Skilled Labor [155.25 h] | 40,167.42 | Z G |
|  | 2 | **PORTABLE WATER IN ( PH2-G-MCE0 )** |  | 2026-07-07 | 2027-05-27 |  |  |  |  |  |  |  |  |  |  |
|  | 7 | **Pipes Work** |  | 2026-07-07 | 2026-11-24 |  |  |  |  |  |  |  |  |  |  |
|  | 1 | **Excavation** |  | 2026-07-07 | 2026-08-16 |  |  |  |  |  |  |  |  |  |  |
| SDR-2-CON-PW-ZA-3960 |  | Excavation for PW HDPE Pipe 225 mm. Section 1 | 21d | 2026-07-07 A | 2026-07-14 A | SDR-2-CON-TS-ZA-2400 SS | 100% |  | 2027-01-19 | 2027-02-11 |  |  | SIC- Cost; Plumbing Helper [67.9 h]; Labor [38.41 h]; Plumber [67.9 h]; Excavator [12.9 h]; Excavator Operator [67.9 h]; Un-Skilled Labor [135.79 h]; Skilled Labor [135.79 h] | 19,451.69 | Z G |
| SDR-2-CON-PW-ZA-2910 |  | Excavation for PW HDPE Pipe 225 mm. Section 2 | 21d | 2026-07-19 A | 2026-08-16 A | SDR-2-CON-PW-ZA-3960 | 100% |  | 2027-02-13 | 2027-03-14 |  |  | SIC- Cost; Plumbing Helper [67.9 h]; Labor [38.41 h]; Plumber [67.9 h]; Excavator [12.9 h]; Excavator Operator [67.9 h]; Un-Skilled Labor [135.79 h]; Skilled Labor [135.79 h] | 19,451.69 | Z G |

| ID | WBS | Activity | Duration | Start | Finish | Predecessors | Complete | Remaining | Planned start | Planned finish | Total float | Free float | Resources | Cost | ZONE G |
| --- | --- | --- | --- | --- | --- | --- | --- | --- | --- | --- | --- | --- | --- | --- | --- |
|  | 3 | **bedding Works** |  | 2026-08-26 | 2026-11-01 |  |  |  |  |  |  |  |  |  |  |
| SDR-2-CON-PW-ZA-2940 |  | Sand bedding for PW HDPE Pipe 225 mm. | 18d | 2026-08-26 A | 2026-11-01 | SDR-2-CON-PW-ZA-2910 | 45% | 1d | 2027-03-15 | 2027-04-04 | 139d | 0d | SIC- Cost [38897.9]; Plumbing Helper [95.54 h]; Labor [38.41 h]; Plumber [95.54 h]; Excavator [6 h]; Excavator Operator [119.42 h]; Un-Skilled Labor [119.42 h]; Skilled Labor [119.42 h] | 9,725.85 | Z G |
|  | 2 | **Pipes Laying** |  | 2026-08-13 | 2026-11-01 |  |  |  |  |  |  |  |  |  |  |
| SDR-2-CON-PW-ZA-2920 |  | Install PW 225 mm HDPE Pipe | 18d | 2026-08-13 A | 2026-11-01 | SDR-2-CON-PW-ZA-2940 FF | 98% | 1d | 2027-04-05 | 2027-04-25 | 139d | 0d | SIC- Cost [126418]; Plumbing Helper [40.13 h]; Labor [76.81 h]; Plumber [40.13 h]; Excavator [12 h]; Excavator Operator [102.24 h]; Un-Skilled Labor [102.24 h]; Skilled Labor [112.31 h] | 87,532.6 | Z G |
|  | 5 | **Testing** |  | 2026-11-02 | 2026-11-09 |  |  |  |  |  |  |  |  |  |  |
| SDR-2-CON-PW-ZA-2930 |  | Testing of PW HDPE Pipe 225 mm. | 7d | 2026-11-02 | 2026-11-09 | SDR-2-CON-PW-ZA-2920 |  |  |  |  | 139d | 0d | SIC- Cost [29173.4]; Plumbing Helper [76.43 h]; Labor [25.6 h]; Plumber [76.43 h]; Excavator [12 h]; Excavator Operator [95.54 h]; Un-Skilled Labor [95.54 h]; Skilled Labor [95.54 h] | 19,451.69 | Z G |
|  | 4 | **Backfilling** |  | 2026-11-10 | 2026-11-24 |  |  |  |  |  |  |  |  |  |  |
| SDR-2-CON-PW-ZA-2950 |  | Backfilling of PW HDPE Pipe 225 mm. | 13d | 2026-11-10 | 2026-11-24 | SDR-2-CON-PW-ZA-2930 |  |  |  |  | 139d |  | SIC- Cost [29173.4]; Plumbing Helper [152.86 h]; Labor [25.6 h]; Plumber [152.86 h]; Excavator [6 h]; Excavator Operator [191.07 h]; Un-Skilled Labor [191.07 h]; Skilled Labor [191.07 h] | 38,903.37 | Z G |
|  | 3 | **Valve Chambers & Valves & Fire Hydrant** |  | 2027-01-21 | 2027-05-27 |  |  |  |  |  |  |  |  |  |  |
|  | 3 | **Excavation** |  | 2027-01-21 | 2027-03-16 |  |  |  |  |  |  |  |  |  |  |
| SDR-2-CON-PW-ZA-3970 |  | Excavation for Valve Chambers Section 1 | 21d | 2027-01-21 | 2027-02-14 | SDR-2-CON-PW-ZA-3960 SS, SDR-2-CON-TE-ZA-3370 |  |  |  |  | 3d | 0d | SIC- Cost [56482.5]; Plumbing Helper [210.18 h]; Labor [25.6 h]; Plumber [210.18 h]; Excavator [12 h]; Excavator Operator [262.72 h]; Un-Skilled Labor [262.72 h]; Skilled Labor [262.72 h] | 15,062.79 | Z G |
| SDR-2-CON-PW-ZA-2980 |  | Excavation for Valve Chambers Section 2 | 21d | 2027-02-15 | 2027-03-16 | SDR-2-CON-PW-ZA-3970 |  |  |  |  | 3d | 0d | SIC- Cost [56482.5]; Plumbing Helper [210.18 h]; Labor [25.6 h]; Plumber [210.18 h]; Excavator [12 h]; Excavator Operator [262.72 h]; Un-Skilled Labor [262.72 h]; Skilled Labor [262.72 h] | 15,062.79 | Z G |
|  | 1 | **bedding Works** |  | 2027-03-17 | 2027-04-06 |  |  |  |  |  |  |  |  |  |  |
| SDR-2-CON-PW-ZA-2960 |  | Sand bedding for Valve Chambers | 18d | 2027-03-17 | 2027-04-06 | SDR-2-CON-PW-ZA-2980 |  |  |  |  | 3d | 0d | SIC- Cost [23901.1]; Plumbing Helper [76.43 h]; Labor [25.6 h]; Plumber [76.43 h]; Excavator [14.67 h]; Excavator Operator [95.54 h]; Un-Skilled Labor [95.54 h]; Skilled Labor [95.54 h] | 20,083.72 | Z G |
|  | 4 | **Install Chambers & Valves & Fire Hydrant** |  | 2027-04-07 | 2027-04-26 |  |  |  |  |  |  |  |  |  |  |
| SDR-2-CON-PW-ZA-2990 |  | Install Chambers & Valves | 17d | 2027-04-07 | 2027-04-26 | SDR-2-CON-PW-ZA-2960 |  |  |  |  | 3d | 0d | SIC- Cost [18906.2]; Plumbing Helper [162.41 h]; Labor [25.6 h]; Plumber [40.13 h]; Excavator [12 h]; Excavator Operator [92.16 h]; Un-Skilled Labor [92.16 h]; Skilled Labor [102.24 h] | 90,376.7 | Z G |
|  | 2 | **Testing** |  | 2027-04-27 | 2027-05-08 |  |  |  |  |  |  |  |  |  |  |
| SDR-2-CON-PW-ZA-2970 |  | Testing for Chambers & Valves | 10d | 2027-04-27 | 2027-05-08 | SDR-2-CON-PW-ZA-2990 |  |  |  |  | 3d | 0d | SIC- Cost [23901.1]; Plumbing Helper [76.43 h]; Labor [25.6 h]; Plumber [76.43 h]; Excavator [9.6 h]; Excavator Operator [95.54 h]; Un-Skilled Labor [95.54 h]; Skilled Labor [95.54 h] | 20,083.72 | Z G |
|  | 6 | **Backfilling** |  | 2027-05-09 | 2027-05-27 |  |  |  |  |  |  |  |  |  |  |
| SDR-2-CON-PW-ZA-3000 |  | Backfilling for Chambers & Valves | 12d | 2027-05-09 | 2027-05-27 | SDR-2-CON-PW-ZA-2970 |  |  |  |  | 20d | 18d | SIC- Cost [1798.57]; Plumbing Helper [124.2 h]; Labor [25.6 h]; Plumber [124.2 h]; Excavator [6 h]; Excavator Operator [155.25 h]; Un-Skilled Labor [155.25 h]; Skilled Labor [155.25 h] | 40,167.42 | Z G |
|  | 3 | **PORTABLE WATER IN ( PH2-G-MCF0 )** |  | 2026-07-14 | 2027-05-10 |  |  |  |  |  |  |  |  |  |  |
|  | 7 | **Pipes Work** |  | 2026-07-14 | 2027-02-01 |  |  |  |  |  |  |  |  |  |  |
|  | 1 | **Excavation** |  | 2026-07-14 | 2026-08-09 |  |  |  |  |  |  |  |  |  |  |
| SDR-2-CON-PW-ZA-3980 |  | Excavation for PW HDPE Pipe 225 mm. Section 1 | 21d | 2026-07-14 A | 2026-07-20 A | SDR-2-CON-TS-ZA-2900 SS | 100% |  | 2027-01-03 | 2027-01-26 |  |  | SIC- Cost; Plumbing Helper [67.9 h]; Labor [38.41 h]; Plumber [67.9 h]; Excavator [20.47 h]; Excavator Operator [67.9 h]; Un-Skilled Labor [135.79 h]; Skilled Labor [135.79 h] | 19,451.69 | Z G |
| SDR-2-CON-PW-ZA-3010 |  | Excavation for PW HDPE Pipe 225 mm. Section 2 | 21d | 2026-08-01 A | 2026-08-09 A | SDR-2-CON-PW-ZA-3980 | 100% |  | 2027-01-27 | 2027-02-20 |  |  | SIC- Cost; Plumbing Helper [67.9 h]; Labor [38.41 h]; Plumber [67.9 h]; Excavator [20.47 h]; Excavator Operator [67.9 h]; Un-Skilled Labor [135.79 h]; Skilled Labor [135.79 h] | 19,451.69 | Z G |

| ID | WBS | Activity | Duration | Start | Finish | Predecessors | Complete | Remaining | Planned start | Planned finish | Total float | Free float | Resources | Cost | ZONE G |
| --- | --- | --- | --- | --- | --- | --- | --- | --- | --- | --- | --- | --- | --- | --- | --- |
|  | 3 | **bedding Works** |  | 2026-08-10 | 2027-01-03 |  |  |  |  |  |  |  |  |  |  |
| SDR-2-CON-PW-ZA-3040 |  | Sand bedding for PW HDPE Pipe 225 mm. | 18d | 2026-08-10 A | 2027-01-03 | SDR-2-CON-PW-ZA-3010 | 90% | 1d | 2027-02-21 | 2027-03-18 | 80d | 0d | SIC- Cost [38897.9]; Plumbing Helper [95.54 h]; Labor [38.41 h]; Plumber [95.54 h]; Excavator [6 h]; Excavator Operator [119.42 h]; Un-Skilled Labor [119.42 h]; Skilled Labor [119.42 h] | 9,725.85 | Z G |
|  | 2 | **Pipes Laying** |  | 2026-08-13 | 2026-08-18 |  |  |  |  |  |  |  |  |  |  |
| SDR-2-CON-PW-ZA-3020 |  | Install PW 225 mm HDPE Pipe | 19d | 2026-08-13 A | 2026-08-18 A | SDR-2-CON-PW-ZA-3040 SS | 100% |  | 2027-03-20 | 2027-04-10 |  |  | SIC- Cost [126418]; Plumbing Helper [152.86 h]; Labor [76.81 h]; Plumber [152.86 h]; Excavator [12 h]; Excavator Operator [191.07 h]; Un-Skilled Labor [130.6 h]; Skilled Labor [130.6 h] | 87,532.6 | Z G |
|  | 5 | **Testing** |  | 2027-01-03 | 2027-01-11 |  |  |  |  |  |  |  |  |  |  |
| SDR-2-CON-PW-ZA-3030 |  | Testing of PW HDPE Pipe 225 mm. | 8d | 2027-01-03 | 2027-01-11 | SDR-2-CON-PW-ZA-3020 |  |  |  |  | 80d | 0d | SIC- Cost [29173.4]; Plumbing Helper [76.43 h]; Labor [25.6 h]; Plumber [76.43 h]; Excavator [8 h]; Excavator Operator [95.54 h]; Un-Skilled Labor [95.54 h]; Skilled Labor [65.3 h] | 19,451.69 | Z G |
|  | 4 | **Backfilling** |  | 2027-01-12 | 2027-02-01 |  |  |  |  |  |  |  |  |  |  |
| SDR-2-CON-PW-ZA-3050 |  | Backfilling of PW HDPE Pipe 225 mm. | 18d | 2027-01-12 | 2027-02-01 | SDR-2-CON-PW-ZA-3030 |  |  |  |  | 80d |  | SIC- Cost [29173.4]; Plumbing Helper [143.3 h]; Labor [25.6 h]; Plumber [143.3 h]; Excavator [6 h]; Excavator Operator [179.13 h]; Un-Skilled Labor [179.13 h]; Skilled Labor [179.13 h] | 38,903.37 | Z G |
|  | 3 | **Valve Chambers & Valves & Fire Hydrant** |  | 2027-01-03 | 2027-05-10 |  |  |  |  |  |  |  |  |  |  |
|  | 3 | **Excavation** |  | 2027-01-03 | 2027-02-20 |  |  |  |  |  |  |  |  |  |  |
| SDR-2-CON-PW-ZA-3990 |  | Excavation for Valve Chambers Section 1 | 21d | 2027-01-03 | 2027-01-26 | SDR-2-CON-PW-ZA-3980 SS |  |  |  |  | 1d | 0d | SIC- Cost [56482.5]; Plumbing Helper [200.63 h]; Labor [25.6 h]; Plumber [200.63 h]; Excavator [22 h]; Excavator Operator [250.78 h]; Un-Skilled Labor [250.78 h]; Skilled Labor [250.78 h] | 15,062.79 | Z G |
| SDR-2-CON-PW-ZA-3080 |  | Excavation for Valve Chambers Section 2 | 21d | 2027-01-27 | 2027-02-20 | SDR-2-CON-PW-ZA-3990 |  |  |  |  | 1d | 0d | SIC- Cost [56482.5]; Plumbing Helper [200.63 h]; Labor [25.6 h]; Plumber [200.63 h]; Excavator [22 h]; Excavator Operator [250.78 h]; Un-Skilled Labor [250.78 h]; Skilled Labor [250.78 h] | 15,062.79 | Z G |
|  | 1 | **bedding Works** |  | 2027-02-21 | 2027-03-21 |  |  |  |  |  |  |  |  |  |  |
| SDR-2-CON-PW-ZA-3060 |  | Sand bedding for Valve Chambers | 20d | 2027-02-21 | 2027-03-21 | SDR-2-CON-PW-ZA-3080 |  |  |  |  | 1d | 0d | SIC- Cost [23901.1]; Plumbing Helper [85.98 h]; Labor [25.6 h]; Plumber [85.98 h]; Excavator [6 h]; Excavator Operator [107.48 h]; Un-Skilled Labor [107.48 h]; Skilled Labor [107.48 h] | 20,083.72 | Z G |
|  | 4 | **Install Chambers & Valves & Fire Hydrant** |  | 2027-03-22 | 2027-04-12 |  |  |  |  |  |  |  |  |  |  |
| SDR-2-CON-PW-ZA-3090 |  | Install Chambers & Valves | 19d | 2027-03-22 | 2027-04-12 | SDR-2-CON-PW-ZA-3060 |  |  |  |  | 1d | 0d | SIC- Cost [18906.2]; Plumbing Helper [130.64 h]; Labor [25.6 h]; Plumber [130.64 h]; Excavator [12 h]; Excavator Operator [127.99 h]; Un-Skilled Labor [127.99 h]; Skilled Labor [138.07 h] | 90,376.7 | Z G |
|  | 2 | **Testing** |  | 2027-04-13 | 2027-04-21 |  |  |  |  |  |  |  |  |  |  |
| SDR-2-CON-PW-ZA-3070 |  | Testing for Chambers & Valves | 8d | 2027-04-13 | 2027-04-21 | SDR-2-CON-PW-ZA-3090 |  |  |  |  | 1d | 0d | SIC- Cost [23901.1]; Plumbing Helper [76.43 h]; Labor [25.6 h]; Plumber [76.43 h]; Excavator [12 h]; Excavator Operator [95.54 h]; Un-Skilled Labor [95.54 h]; Skilled Labor [95.54 h] | 20,083.72 | Z G |
|  | 6 | **Backfilling** |  | 2027-04-22 | 2027-05-10 |  |  |  |  |  |  |  |  |  |  |
| SDR-2-CON-PW-ZA-3100 |  | Backfilling for Chambers & Valves | 16d | 2027-04-22 | 2027-05-10 | SDR-2-CON-PW-ZA-3070 |  |  |  |  | 1d |  | SIC- Cost [1798.57]; Plumbing Helper [143.3 h]; Labor [25.6 h]; Plumber [143.3 h]; Excavator [6 h]; Excavator Operator [179.13 h]; Un-Skilled Labor [179.13 h]; Skilled Labor [179.13 h] | 40,167.42 | Z G |
|  | 4 | **PORTABLE WATER IN ( PH2-G-MCG0 )** |  | 2026-06-08 | 2027-02-24 |  |  |  |  |  |  |  |  |  |  |
|  | 7 | **Pipes Work** |  | 2026-06-08 | 2026-11-29 |  |  |  |  |  |  |  |  |  |  |
|  | 1 | **Excavation** |  | 2026-06-08 | 2026-06-29 |  |  |  |  |  |  |  |  |  |  |
| SDR-2-CON-PW-ZA-4000 |  | Excavation for PW HDPE Pipe 225 mm. Section 1 | 21d | 2026-06-08 A | 2026-06-18 A | SDR-2-CON-TS-ZA-3000 SS | 100% |  | 2027-01-16 | 2027-02-08 |  |  | SIC- Cost; Plumbing Helper [135.79 h]; Labor [38.41 h]; Plumber [135.79 h]; Excavator [18 h]; Excavator Operator [135.79 h]; Un-Skilled Labor [135.79 h]; Skilled Labor [135.79 h] | 19,451.69 | Z G |
| SDR-2-CON-PW-ZA-3110 |  | Excavation for PW HDPE Pipe 225 mm. Section 2 | 21d | 2026-06-15 A | 2026-06-29 A | SDR-2-CON-PW-ZA-4000 | 100% |  | 2027-02-09 | 2027-03-06 |  |  | SIC- Cost; Plumbing Helper [135.79 h]; Labor [38.41 h]; Plumber [135.79 h]; Excavator [18 h]; Excavator Operator [135.79 h]; Un-Skilled Labor [135.79 h]; Skilled Labor [135.79 h] | 19,451.69 | Z G |

| ID | WBS | Activity | Duration | Start | Finish | Predecessors | Complete | Remaining | Planned start | Planned finish | Total float | Free float | Resources | Cost | ZONE G |
| --- | --- | --- | --- | --- | --- | --- | --- | --- | --- | --- | --- | --- | --- | --- | --- |
|  | 3 | **bedding Works** |  | 2026-08-26 | 2026-11-01 |  |  |  |  |  |  |  |  |  |  |
| SDR-2-CON-PW-ZA-3140 |  | Sand bedding for PW HDPE Pipe 225 mm. | 18d | 2026-08-26 A | 2026-11-01 | SDR-2-CON-PW-ZA-3110 | 50% | 1d | 2027-03-07 | 2027-03-31 | 135d | 0d | SIC- Cost [38897.9]; Plumbing Helper [76.43 h]; Labor [38.41 h]; Plumber [76.43 h]; Excavator [6 h]; Excavator Operator [95.54 h]; Un-Skilled Labor [95.54 h]; Skilled Labor [95.54 h] | 9,725.85 | Z G |
|  | 2 | **Pipes Laying** |  | 2026-08-13 | 2026-08-20 |  |  |  |  |  |  |  |  |  |  |
| SDR-2-CON-PW-ZA-3120 |  | Install PW 225 mm HDPE Pipe | 14d | 2026-08-13 A | 2026-08-20 A | SDR-2-CON-PW-ZA-3140 SS | 100% |  | 2027-04-01 | 2027-04-17 |  |  | SIC- Cost [126418]; Plumbing Helper [152.86 h]; Labor [76.81 h]; Plumber [40.13 h]; Excavator [8 h]; Excavator Operator [70.14 h]; Un-Skilled Labor [70.14 h]; Skilled Labor [80.22 h] | 87,532.6 | Z G |
|  | 5 | **Testing** |  | 2026-11-01 | 2026-11-09 |  |  |  |  |  |  |  |  |  |  |
| SDR-2-CON-PW-ZA-3130 |  | Testing of PW HDPE Pipe 225 mm. | 8d | 2026-11-01 | 2026-11-09 | SDR-2-CON-PW-ZA-3120 |  |  |  |  | 135d | 0d | SIC- Cost [29173.4]; Plumbing Helper [76.43 h]; Labor [25.6 h]; Plumber [76.43 h]; Excavator [12 h]; Excavator Operator [95.54 h]; Un-Skilled Labor [95.54 h]; Skilled Labor [95.54 h] | 19,451.69 | Z G |
|  | 4 | **Backfilling** |  | 2026-11-10 | 2026-11-29 |  |  |  |  |  |  |  |  |  |  |
| SDR-2-CON-PW-ZA-3150 |  | Backfilling of PW HDPE Pipe 225 mm. | 17d | 2026-11-10 | 2026-11-29 | SDR-2-CON-PW-ZA-3130 |  |  |  |  | 135d |  | SIC- Cost [29173.4]; Plumbing Helper [171.96 h]; Labor [25.6 h]; Plumber [171.96 h]; Excavator [10 h]; Excavator Operator [214.96 h]; Un-Skilled Labor [214.96 h]; Skilled Labor [214.96 h] | 38,903.37 | Z G |
|  | 3 | **Valve Chambers & Valves & Fire Hydrant** |  | 2026-11-01 | 2027-02-24 |  |  |  |  |  |  |  |  |  |  |
|  | 3 | **Excavation** |  | 2026-11-01 | 2026-12-19 |  |  |  |  |  |  |  |  |  |  |
| SDR-2-CON-PW-ZA-4010 |  | Excavation for Valve Chambers Section 1 | 21d | 2026-11-01 | 2026-11-24 | SDR-2-CON-PW-ZA-4000 SS |  |  |  |  | 61d | 0d | SIC- Cost [56482.5]; Plumbing Helper [152.86 h]; Labor [25.6 h]; Plumber [152.86 h]; Excavator [18 h]; Excavator Operator [191.07 h]; Un-Skilled Labor [191.07 h]; Skilled Labor [191.07 h] | 15,062.79 | Z G |
| SDR-2-CON-PW-ZA-3180 |  | Excavation for Valve Chambers Section 2 | 21d | 2026-11-25 | 2026-12-19 | SDR-2-CON-PW-ZA-4010 |  |  |  |  | 61d | 0d | SIC- Cost [56482.5]; Plumbing Helper [152.86 h]; Labor [25.6 h]; Plumber [152.86 h]; Excavator [18 h]; Excavator Operator [191.07 h]; Un-Skilled Labor [191.07 h]; Skilled Labor [191.07 h] | 15,062.79 | Z G |
|  | 1 | **bedding Works** |  | 2026-12-20 | 2027-01-09 |  |  |  |  |  |  |  |  |  |  |
| SDR-2-CON-PW-ZA-3160 |  | Sand bedding for Valve Chambers | 18d | 2026-12-20 | 2027-01-09 | SDR-2-CON-PW-ZA-3180 |  |  |  |  | 61d | 0d | SIC- Cost [23901.1]; Plumbing Helper [76.43 h]; Labor [25.6 h]; Plumber [76.43 h]; Excavator [6 h]; Excavator Operator [95.54 h]; Un-Skilled Labor [95.54 h]; Skilled Labor [95.54 h] | 20,083.72 | Z G |
|  | 4 | **Install Chambers & Valves & Fire Hydrant** |  | 2027-01-10 | 2027-01-25 |  |  |  |  |  |  |  |  |  |  |
| SDR-2-CON-PW-ZA-3190 |  | Install Chambers & Valves | 14d | 2027-01-10 | 2027-01-25 | SDR-2-CON-PW-ZA-3160 |  |  |  |  | 61d | 0d | SIC- Cost [18906.2]; Plumbing Helper [40.13 h]; Labor [25.6 h]; Plumber [40.13 h]; Excavator [8 h]; Excavator Operator [70.14 h]; Un-Skilled Labor [70.14 h]; Skilled Labor [80.22 h] | 90,376.7 | Z G |
|  | 2 | **Testing** |  | 2027-01-26 | 2027-02-03 |  |  |  |  |  |  |  |  |  |  |
| SDR-2-CON-PW-ZA-3170 |  | Testing for Chambers & Valves | 8d | 2027-01-26 | 2027-02-03 | SDR-2-CON-PW-ZA-3190 |  |  |  |  | 61d | 0d | SIC- Cost [23901.1]; Plumbing Helper [76.43 h]; Labor [25.6 h]; Plumber [76.43 h]; Excavator [12 h]; Excavator Operator [95.54 h]; Un-Skilled Labor [95.54 h]; Skilled Labor [95.54 h] | 20,083.72 | Z G |
|  | 6 | **Backfilling** |  | 2027-02-04 | 2027-02-24 |  |  |  |  |  |  |  |  |  |  |
| SDR-2-CON-PW-ZA-3200 |  | Backfilling for Chambers & Valves | 17d | 2027-02-04 | 2027-02-24 | SDR-2-CON-PW-ZA-3170 |  |  |  |  | 61d |  | SIC- Cost [1798.57]; Plumbing Helper [124.2 h]; Labor [25.6 h]; Plumber [124.2 h]; Excavator [10 h]; Excavator Operator [155.25 h]; Un-Skilled Labor [155.25 h]; Skilled Labor [155.25 h] | 40,167.42 | Z G |
|  | 5 | **PORTABLE WATER IN ( PH2-G-MCZ0 )** |  | 2026-07-13 | 2027-02-25 |  |  |  |  |  |  |  |  |  |  |
|  | 7 | **Pipes Work** |  | 2026-07-13 | 2026-11-28 |  |  |  |  |  |  |  |  |  |  |
|  | 1 | **Excavation** |  | 2026-07-13 | 2026-08-19 |  |  |  |  |  |  |  |  |  |  |
| SDR-2-CON-PW-ZA-4020 |  | Excavation for PW HDPE Pipes 315 mm Section 1 | 21d | 2026-07-13 A | 2026-07-20 A | SDR-2-CON-TS-ZA-2500 SS | 100% |  | 2027-01-19 | 2027-02-11 |  |  | SIC- Cost; Plumbing Helper [135.79 h]; Labor [38.41 h]; Plumber [135.79 h]; Excavator [18 h]; Excavator Operator [135.79 h]; Un-Skilled Labor [135.79 h]; Skilled Labor [135.79 h] | 41,173.52 | Z G |
| SDR-2-CON-PW-ZA-2560 |  | Excavation for PW HDPE Pipes 315 mm Section 2 | 21d | 2026-07-21 A | 2026-08-19 A | SDR-2-CON-PW-ZA-4020 | 100% |  | 2027-02-13 | 2027-03-14 |  |  | SIC- Cost; Plumbing Helper [135.79 h]; Labor [38.41 h]; Plumber [135.79 h]; Excavator [18 h]; Excavator Operator [135.79 h]; Un-Skilled Labor [135.79 h]; Skilled Labor [135.79 h] | 41,173.52 | Z G |

| ID | WBS | Activity | Duration | Start | Finish | Predecessors | Complete | Remaining | Planned start | Planned finish | Total float | Free float | Resources | Cost | ZONE G | ZONE A |
| --- | --- | --- | --- | --- | --- | --- | --- | --- | --- | --- | --- | --- | --- | --- | --- | --- |
|  | 8 | **bedding Works** |  | 2026-08-26 | 2026-11-01 |  |  |  |  |  |  |  |  |  |  |  |
| SDR-2-CON-PW-ZA-2640 |  | Sand bedding for PW HDPE Pipes 315 mm | 19d | 2026-08-26 A | 2026-11-01 | SDR-2-CON-PW-ZA-2560 | 50% | 1d | 2027-03-15 | 2027-04-05 | 136d | 0d | SIC- Cost [82341.5]; Plumbing Helper [76.43 h]; Labor [38.41 h]; Plumber [76.43 h]; Excavator [6 h]; Excavator Operator [95.54 h]; Un-Skilled Labor [95.54 h]; Skilled Labor [95.54 h] | 20,586.76 | Z G |  |
|  | 2 | **Pipes Laying** |  | 2026-08-13 | 2026-11-01 |  |  |  |  |  |  |  |  |  |  |  |
| SDR-2-CON-PW-ZA-2570 |  | Install PW 315 mm HDPE Pipe | 16d | 2026-08-13 A | 2026-11-01 | SDR-2-CON-PW-ZA-2640 FF | 95% | 1d | 2027-04-06 | 2027-04-24 | 136d | 0d | SIC- Cost [267610]; Plumbing Helper [40.13 h]; Labor [76.81 h]; Plumber [40.13 h]; Excavator [8.65 h]; Excavator Operator [80.22 h]; Un-Skilled Labor [80.22 h]; Skilled Labor [90.29 h] | 185,280.81 | Z G |  |
|  | 5 | **Testing** |  | 2026-11-02 | 2026-11-08 |  |  |  |  |  |  |  |  |  |  |  |
| SDR-2-CON-PW-ZA-2630 |  | Testing of PW HDPE Pipe 315 mm. | 6d | 2026-11-02 | 2026-11-08 | SDR-2-CON-PW-ZA-2570 |  |  |  |  | 136d | 0d | SIC- Cost [61756.1]; Plumbing Helper [57.32 h]; Labor [25.6 h]; Plumber [57.32 h]; Excavator [12 h]; Excavator Operator [71.65 h]; Un-Skilled Labor [71.65 h]; Skilled Labor [71.65 h] | 41,173.51 | Z G |  |
|  | 9 | **Backfilling** |  | 2026-11-09 | 2026-11-28 |  |  |  |  |  |  |  |  |  |  |  |
| SDR-2-CON-PW-ZA-2650 |  | Backfilling of PW HDPE Pipe 315 mm. | 17d | 2026-11-09 | 2026-11-28 | SDR-2-CON-PW-ZA-2630 |  |  |  |  | 136d |  | SIC- Cost [61756.1]; Plumbing Helper [133.75 h]; Labor [25.6 h]; Plumber [133.75 h]; Excavator [10 h]; Excavator Operator [167.19 h]; Un-Skilled Labor [167.19 h]; Skilled Labor [167.19 h] | 82,347.03 | Z G |  |
|  | 3 | **Valve Chambers & Valves & Fire Hydrant** |  | 2026-11-01 | 2027-02-25 |  |  |  |  |  |  |  |  |  |  |  |
|  | 3 | **Excavation** |  | 2026-11-01 | 2026-12-19 |  |  |  |  |  |  |  |  |  |  |  |
| SDR-2-CON-PW-ZA-4030 |  | Excavation for Valve Chambers Section 1 | 21d | 2026-11-01 | 2026-11-24 | SDR-2-CON-PW-ZA-4020 SS |  |  |  |  | 60d | 0d | SIC- Cost [56482.5]; Plumbing Helper [200.63 h]; Labor [25.6 h]; Plumber [200.63 h]; Excavator [18 h]; Excavator Operator [250.78 h]; Un-Skilled Labor [250.78 h]; Skilled Labor [250.78 h] | 15,062.79 | Z G |  |
| SDR-2-CON-PW-ZA-2600 |  | Excavation for Valve Chambers Section 2 | 21d | 2026-11-25 | 2026-12-19 | SDR-2-CON-PW-ZA-4030 |  |  |  |  | 60d | 0d | SIC- Cost [56482.5]; Plumbing Helper [200.63 h]; Labor [25.6 h]; Plumber [200.63 h]; Excavator [18 h]; Excavator Operator [250.78 h]; Un-Skilled Labor [250.78 h]; Skilled Labor [250.78 h] | 15,062.79 | Z G |  |
|  | 1 | **bedding Works** |  | 2026-12-20 | 2027-01-10 |  |  |  |  |  |  |  |  |  |  |  |
| SDR-2-CON-PW-ZA-2580 |  | Sand bedding for Valve Chambers | 19d | 2026-12-20 | 2027-01-10 | SDR-2-CON-PW-ZA-2600 |  |  |  |  | 60d | 0d | SIC- Cost [23901.1]; Plumbing Helper [76.43 h]; Labor [25.6 h]; Plumber [76.43 h]; Excavator [6 h]; Excavator Operator [95.54 h]; Un-Skilled Labor [95.54 h]; Skilled Labor [95.54 h] | 20,083.72 | Z G |  |
|  | 4 | **Install Chambers & Valves & Fire Hydrant** |  | 2027-01-11 | 2027-01-28 |  |  |  |  |  |  |  |  |  |  |  |
| SDR-2-CON-PW-ZA-2610 |  | Install Chambers & Valves | 16d | 2027-01-11 | 2027-01-28 | SDR-2-CON-PW-ZA-2580 |  |  |  |  | 60d | 0d | SIC- Cost [18906.2]; Plumbing Helper [40.13 h]; Labor [25.6 h]; Plumber [40.13 h]; Excavator [13.8 h]; Excavator Operator [87.67 h]; Un-Skilled Labor [87.67 h]; Skilled Labor [97.75 h] | 90,376.7 | Z G |  |
|  | 2 | **Testing** |  | 2027-01-30 | 2027-02-04 |  |  |  |  |  |  |  |  |  |  |  |
| SDR-2-CON-PW-ZA-2590 |  | Testing for Chambers & Valves | 6d | 2027-01-30 | 2027-02-04 | SDR-2-CON-PW-ZA-2610 |  |  |  |  | 60d | 0d | SIC- Cost [23901.1]; Plumbing Helper [57.32 h]; Labor [25.6 h]; Plumber [57.32 h]; Excavator [6 h]; Excavator Operator [71.65 h]; Un-Skilled Labor [71.65 h]; Skilled Labor [71.65 h] | 20,083.72 | Z G |  |
|  | 6 | **Backfilling** |  | 2027-02-06 | 2027-02-25 |  |  |  |  |  |  |  |  |  |  |  |
| SDR-2-CON-PW-ZA-2620 |  | Backfilling for Chambers & Valves | 17d | 2027-02-06 | 2027-02-25 | SDR-2-CON-PW-ZA-2590 |  |  |  |  | 60d |  | SIC- Cost [1798.57]; Plumbing Helper [133.75 h]; Labor [25.6 h]; Plumber [133.75 h]; Excavator [10 h]; Excavator Operator [167.19 h]; Un-Skilled Labor [167.19 h]; Skilled Labor [167.19 h] | 40,167.42 | Z G |  |
|  | EW | **Electrical Works** |  | 2026-07-01 | 2027-03-29 |  |  |  |  |  |  |  |  |  |  |  |
|  | ZA | **ZONE A** |  | 2026-07-01 | 2027-03-29 |  |  |  |  |  |  |  |  |  |  |  |
|  | 1 | **Street Lighting Network** |  | 2026-07-01 | 2027-03-29 |  |  |  |  |  |  |  |  |  |  |  |
|  | 16 | **Street Lighting Network IN ( PH2-COL-MC10 )** |  | 2026-07-20 | 2027-03-22 |  |  |  |  |  |  |  |  |  |  |  |
|  | 10 | **Excavation** |  | 2026-07-20 | 2026-11-01 |  |  |  |  |  |  |  |  |  |  |  |
| SDR-2-CON-SL-ZA-3590 |  | Excavation for LV Cable Drawpits | 21d | 2026-07-20 A | 2026-09-28 A | SDR-2-PRO-DEL-E-1060, SDR-2-PRO-DEL-M-1010, SDR-2-PRO-DEL-M-1000, SDR-2-PRO-DES-E-1010, SDR-2-PRO-ST-E-1080 | 100% |  | 2026-07-07 | 2026-07-30 |  |  | SIC- Cost; Electrical Forman [135.79 h]; Electrical Technician [135.79 h]; Electrical Helper [135.79 h]; Labor [135.79 h]; Excavator [22.22 h]; Excavator Operator [135.79 h] | 17,966.79 |  | Z A |
| SDR-2-CON-SL-ZA-1000 |  | Excavation for LV Cable Trenches | 21d | 2026-08-12 A | 2026-11-01 | SDR-2-PRO-DEL-E-1060, SDR-2-CON-SL-ZA-3590 FF | 20% | 1d | 2026-08-03 | 2026-08-26 | 3d | 0d | SIC- Cost; Electrical Forman [135.79 h]; Electrical Technician [135.79 h]; Electrical Helper [135.79 h]; Labor [135.79 h]; Excavator [235.22 h]; Excavator Operator [135.79 h] | 17,966.79 |  | Z A |

| ID | WBS | Activity | Duration | Start | Finish | Predecessors | Complete | Remaining | Planned start | Planned finish | Total float | Free float | Resources | Cost | ZONE A |
| --- | --- | --- | --- | --- | --- | --- | --- | --- | --- | --- | --- | --- | --- | --- | --- |
|  | 11 | **Install Footings** |  | 2026-08-31 | 2027-01-09 |  |  |  |  |  |  |  |  |  |  |
| SDR-2-CON-SL-ZA-1010 |  | Install Footings | 21d | 2026-08-31 A | 2027-01-09 | SDR-2-CON-SL-ZA-1000 FF, SDR-2-PRO-DEL-E-1030 FF, SDR-2-PRO-DEL-E-1020 FF, SDR-2-PRO-DEL-E-1070 FF, SDR-2-PRO-DEL-E-1000, SDR-2-PRO-DEL-E-1010, SDR-2-PRO-DEL-E-1210 | 35% | 3.9d | 2026-08-27 | 2026-09-20 | 9d | 0d | SIC- Cost; Electrical Forman [135.79 h]; Electrical Technician [135.79 h]; Electrical Helper [135.79 h]; Labor [135.79 h] | 35,933.57 | Z A |
|  | 12 | **Backfilling** |  | 2027-01-10 | 2027-02-02 |  |  |  |  |  |  |  |  |  |  |
| SDR-2-CON-SL-ZA-1110 |  | Backfilling over LV Cables of Street lighting | 21d | 2027-01-10 | 2027-02-02 | SDR-2-CON-SL-ZA-1010 |  |  |  |  | 9d | 0d | SIC- Cost; Electrical Forman [67.9 h]; Electrical Technician [67.9 h]; Electrical Helper [67.9 h]; Labor [12.8 h]; Excavator [12 h]; Excavator Operator [67.9 h] | 35,933.57 | Z A |
|  | 13 | **Install pole** |  | 2027-02-21 | 2027-03-22 |  |  |  |  |  |  |  |  |  |  |
| SDR-2-CON-SL-ZA-1100 |  | Install Pole | 21d | 2027-02-21 | 2027-03-22 | SDR-2-PRO-MAL-E-1040, SDR-2-CON-SL-ZA-1010, SDR-2-CON-SL-ZA-1110 FS+15d, SDR-2-PRO-DEL-E-1100 |  |  |  |  | 9d | 0d | SIC- Cost; Electrical Forman [67.9 h]; Electrical Technician [67.9 h]; Electrical Helper [67.9 h]; Labor [67.9 h] | 251,534.94 | Z A |
|  | 17 | **Street Lighting Network IN ( PH2-COL-MC20 )** |  | 2026-07-01 | 2027-02-11 |  |  |  |  |  |  |  |  |  |  |
|  | 10 | **Excavation** |  | 2026-07-01 | 2026-11-01 |  |  |  |  |  |  |  |  |  |  |
| SDR-2-CON-SL-ZA-3600 |  | Excavation for LV Cable Drawpits | 21d | 2026-07-01 A | 2026-09-28 A | SDR-2-PRO-DES-E-1010, SDR-2-CON-SL-ZA-3590 FF | 100% |  | 2026-07-13 | 2026-08-05 |  |  | SIC- Cost; Electrical Forman [135.79 h]; Electrical Technician [135.79 h]; Electrical Helper [135.79 h]; Labor [135.79 h]; Excavator [32.22 h]; Excavator Operator [135.79 h] | 17,966.79 | Z A |
| SDR-2-CON-SL-ZA-2870 |  | Excavation for LV Cable Trenches | 21d | 2026-07-13 A | 2026-11-01 | SDR-2-CON-SL-ZA-3600 FF | 50% | 1d | 2026-08-06 | 2026-08-30 | 68d | 31d | SIC- Cost; Electrical Forman [135.79 h]; Electrical Technician [135.79 h]; Electrical Helper [135.79 h]; Labor [135.79 h]; Excavator [32.22 h]; Excavator Operator [135.79 h] | 17,966.79 | Z A |
|  | 11 | **Install Footings** |  | 2026-09-03 | 2026-12-07 |  |  |  |  |  |  |  |  |  |  |
| SDR-2-CON-SL-ZA-2880 |  | Install Footings | 21d | 2026-09-03 A | 2026-12-07 | SDR-2-CON-SL-ZA-2870 FF, SDR-2-PRO-DES-E-1020 FF | 40% | 6d | 2026-08-31 | 2026-09-24 | 37d | 0d | SIC- Cost; Electrical Forman [67.9 h]; Electrical Technician [67.9 h]; Electrical Helper [67.9 h]; Labor [67.9 h] | 35,933.57 | Z A |
|  | 12 | **Backfilling** |  | 2026-12-08 | 2026-12-31 |  |  |  |  |  |  |  |  |  |  |
| SDR-2-CON-SL-ZA-2900 |  | Backfilling over LV Cables of Street lighting | 21d | 2026-12-08 | 2026-12-31 | SDR-2-CON-SL-ZA-2880 |  |  |  |  | 37d | 0d | SIC- Cost; Electrical Forman [67.9 h]; Electrical Technician [67.9 h]; Electrical Helper [67.9 h]; Labor [135.79 h]; Excavator [12 h]; Excavator Operator [135.79 h] | 35,933.57 | Z A |
|  | 13 | **Install pole** |  | 2027-01-19 | 2027-02-11 |  |  |  |  |  |  |  |  |  |  |
| SDR-2-CON-SL-ZA-2890 |  | Install Pole | 21d | 2027-01-19 | 2027-02-11 | SDR-2-CON-SL-ZA-2880, SDR-2-CON-SL-ZA-2900 FS+15d, SDR-2-PRO-DEL-E-1080 |  |  |  |  | 37d | 28d | SIC- Cost; Electrical Forman [67.9 h]; Electrical Technician [67.9 h]; Electrical Helper [67.9 h]; Labor [67.9 h] | 251,534.94 | Z A |
|  | 18 | **Street Lighting Network IN ( PH2-A-MCA0 )** |  | 2026-08-01 | 2027-01-14 |  |  |  |  |  |  |  |  |  |  |
|  | 10 | **Excavation** |  | 2026-08-01 | 2026-11-01 |  |  |  |  |  |  |  |  |  |  |
| SDR-2-CON-SL-ZA-3610 |  | Excavation for LV Cable Drawpits | 21d | 2026-08-01 A | 2026-11-01 | SDR-2-CON-SL-ZA-3600 FF | 70% | 1d | 2026-07-19 | 2026-08-11 | 3d | 0d | SIC- Cost; Electrical Forman [135.79 h]; Electrical Technician [135.79 h]; Electrical Helper [135.79 h]; Labor [135.79 h]; Excavator [22.22 h]; Excavator Operator [135.79 h] | 20,112.76 | Z A |
| SDR-2-CON-SL-ZA-1300 |  | Excavation for LV Cable Trenches | 21d | 2026-08-12 A | 2026-11-01 | SDR-2-CON-SL-ZA-3610 FF | 50% | 1d | 2026-08-12 | 2026-09-05 | 47d | 28d | SIC- Cost; Electrical Forman [135.79 h]; Electrical Technician [135.79 h]; Electrical Helper [135.79 h]; Labor [135.79 h]; Excavator [22.22 h]; Excavator Operator [135.79 h] | 20,112.58 | Z A |
|  | 11 | **Install Footings** |  | 2026-09-03 | 2026-12-03 |  |  |  |  |  |  |  |  |  |  |
| SDR-2-CON-SL-ZA-1310 |  | Install Footings | 21d | 2026-09-03 A | 2026-12-03 | SDR-2-CON-SL-ZA-1300 FF, SDR-2-CON-ST-ZA-6290 FF | 40% | 6d | 2026-09-06 | 2026-09-30 | 19d | 0d | SIC- Cost; Electrical Forman [135.79 h]; Electrical Technician [135.79 h]; Electrical Helper [135.79 h]; Labor [135.79 h] | 40,225.51 | Z A |
|  | 12 | **Backfilling** |  | 2026-11-28 | 2026-12-21 |  |  |  |  |  |  |  |  |  |  |
| SDR-2-CON-SL-ZA-1410 |  | Backfilling over LV Cables of Street lighting | 21d | 2026-11-28 | 2026-12-21 | SDR-2-CON-SL-ZA-1310 SS |  |  |  |  | 19d | 0d | SIC- Cost; Electrical Forman [67.9 h]; Electrical Technician [67.9 h]; Electrical Helper [67.9 h]; Labor [67.9 h]; Excavator [6 h]; Excavator Operator [67.9 h] | 40,225.51 | Z A |

| ID | WBS | Activity | Duration | Start | Finish | Predecessors | Complete | Remaining | Planned start | Planned finish | Total float | Free float | Resources | Cost | ZONE A |
| --- | --- | --- | --- | --- | --- | --- | --- | --- | --- | --- | --- | --- | --- | --- | --- |
|  | 13 | **Install pole** |  | 2026-12-22 | 2027-01-14 |  |  |  |  |  |  |  |  |  |  |
| SDR-2-CON-SL-ZA-1400 |  | Install Pole | 21d | 2026-12-22 | 2027-01-14 | SDR-2-CON-SL-ZA-1410 |  |  |  |  | 19d | 15d | SIC- Cost; Electrical Forman [135.79 h]; Electrical Technician [135.79 h]; Electrical Helper [135.79 h]; Labor [135.79 h] | 281,578.51 | Z A |
|  | 19 | **Street Lighting Network IN ( PH2-A-MCB0 )** |  | 2026-08-04 | 2027-01-03 |  |  |  |  |  |  |  |  |  |  |
|  | 10 | **Excavation** |  | 2026-08-04 | 2026-11-01 |  |  |  |  |  |  |  |  |  |  |
| SDR-2-CON-SL-ZA-3620 |  | Excavation for LV Cable Drawpits | 21d | 2026-08-04 A | 2026-11-01 | SDR-2-CON-SL-ZA-3610 FF | 80% | 1d | 2026-07-25 | 2026-08-17 | 3d | 0d | SIC- Cost; Electrical Forman [51.21 h]; Electrical Technician [135.79 h]; Electrical Helper [135.79 h]; Labor [135.79 h]; Excavator [32.22 h]; Excavator Operator [135.79 h] | 20,112.76 | Z A |
| SDR-2-CON-SL-ZA-2950 |  | Excavation for LV Cable Trenches | 21d | 2026-08-12 A | 2026-11-01 | SDR-2-CON-SL-ZA-3620 FF | 50% | 1d | 2026-08-18 | 2026-09-10 | 3d | 0d | SIC- Cost; Electrical Forman [51.21 h]; Electrical Technician [135.79 h]; Electrical Helper [135.79 h]; Labor [135.79 h]; Excavator [32.22 h]; Excavator Operator [135.79 h] | 20,112.76 | Z A |
|  | 11 | **Install Footings** |  | 2026-08-31 | 2026-11-03 |  |  |  |  |  |  |  |  |  |  |
| SDR-2-CON-SL-ZA-2960 |  | Install Footings | 21d | 2026-08-31 A | 2026-11-03 | SDR-2-CON-SL-ZA-2950 FF | 40% | 3d | 2026-09-12 | 2026-10-06 | 1d | 0d | SIC- Cost; Electrical Forman [135.79 h]; Electrical Technician [135.79 h]; Electrical Helper [135.79 h]; Labor [135.79 h] | 40,225.51 | Z A |
|  | 12 | **Backfilling** |  | 2026-11-04 | 2026-11-28 |  |  |  |  |  |  |  |  |  |  |
| SDR-2-CON-SL-ZA-2980 |  | Backfilling over LV Cables of Street lighting | 21d | 2026-11-04 | 2026-11-28 | SDR-2-CON-SL-ZA-2960 |  |  |  |  | 1d | 0d | SIC- Cost; Electrical Forman [67.9 h]; Electrical Technician [67.9 h]; Electrical Helper [67.9 h]; Labor [67.9 h]; Excavator [12 h]; Excavator Operator [67.9 h]; Dumper Operator [67.9 h]; Dumper Truck [50 h] | 40,225.51 | Z A |
|  | 13 | **Install pole** |  | 2026-12-10 | 2027-01-03 |  |  |  |  |  |  |  |  |  |  |
| SDR-2-CON-SL-ZA-2970 |  | Install Pole | 21d | 2026-12-10 | 2027-01-03 | SDR-2-CON-SL-ZA-2980 FS+10d |  |  |  |  | 1d | 0d | SIC- Cost; Electrical Forman [67.9 h]; Electrical Technician [67.9 h]; Electrical Helper [67.9 h]; Labor [67.9 h] | 281,578.51 | Z A |
|  | 20 | **Street Lighting Network IN ( PH2-A-MCC0 )** |  | 2026-07-20 | 2027-01-12 |  |  |  |  |  |  |  |  |  |  |
|  | 10 | **Excavation** |  | 2026-07-20 | 2026-11-01 |  |  |  |  |  |  |  |  |  |  |
| SDR-2-CON-SL-ZA-3630 |  | Excavation for LV Cable Drawpits | 21d | 2026-07-20 A | 2026-11-01 | SDR-2-CON-SL-ZA-3620 FF | 80% | 1d | 2026-07-30 | 2026-08-23 | 20d | 0d | SIC- Cost; Electrical Forman [135.79 h]; Electrical Technician [135.79 h]; Electrical Helper [135.79 h]; Labor [135.79 h]; Excavator [32.22 h]; Excavator Operator [135.79 h] | 20,112.76 | Z A |
| SDR-2-CON-SL-ZA-2990 |  | Excavation for LV Cable Trenches | 21d | 2026-08-01 A | 2026-11-01 | SDR-2-CON-SL-ZA-3630 FF | 50% | 1d | 2026-08-24 | 2026-09-16 | 50d | 5d | SIC- Cost; Electrical Forman [135.79 h]; Electrical Technician [135.79 h]; Electrical Helper [135.79 h]; Labor [135.79 h]; Excavator [32.22 h]; Excavator Operator [135.79 h] | 20,112.76 | Z A |
|  | 11 | **Install Footings** |  | 2026-09-03 | 2026-11-07 |  |  |  |  |  |  |  |  |  |  |
| SDR-2-CON-SL-ZA-3000 |  | Install Footings | 21d | 2026-09-03 A | 2026-11-07 | SDR-2-CON-SL-ZA-2990 FF | 40% | 6d | 2026-09-17 | 2026-10-12 | 45d | 0d | SIC- Cost; Electrical Forman [67.9 h]; Electrical Technician [135.79 h]; Electrical Helper [67.9 h]; Labor [67.9 h] | 40,225.51 | Z A |
|  | 12 | **Backfilling** |  | 2026-11-08 | 2026-12-01 |  |  |  |  |  |  |  |  |  |  |
| SDR-2-CON-SL-ZA-3020 |  | Backfilling over LV Cables of Street lighting | 21d | 2026-11-08 | 2026-12-01 | SDR-2-CON-SL-ZA-3000 |  |  |  |  | 45d | 0d | SIC- Cost; Electrical Forman [67.9 h]; Electrical Technician [67.9 h]; Electrical Helper [67.9 h]; Labor [67.9 h]; Excavator [12 h]; Excavator Operator [67.9 h]; Dumper Operator [67.9 h]; Dumper Truck [50 h] | 40,225.51 | Z A |
|  | 13 | **Install pole** |  | 2026-12-20 | 2027-01-12 |  |  |  |  |  |  |  |  |  |  |
| SDR-2-CON-SL-ZA-3010 |  | Install Pole | 21d | 2026-12-20 | 2027-01-12 | SDR-2-CON-SL-ZA-3020 FS+15d |  |  |  |  | 45d | 39d | SIC- Cost; Electrical Forman [67.9 h]; Electrical Technician [67.9 h]; Electrical Helper [67.9 h]; Labor [67.9 h] | 281,578.51 | Z A |
|  | 21 | **Street Lighting Network IN ( PH2-A-MCD0 )** |  | 2026-07-20 | 2027-03-29 |  |  |  |  |  |  |  |  |  |  |
|  | 10 | **Excavation** |  | 2026-07-20 | 2026-11-01 |  |  |  |  |  |  |  |  |  |  |
| SDR-2-CON-SL-ZA-3640 |  | Excavation for LV Cable Drawpits | 21d | 2026-07-20 A | 2026-11-01 | SDR-2-PRO-DES-E-1000 FS+12d, SDR-2-CON-SL-ZA-3630 FF | 80% | 1d | 2026-08-05 | 2026-08-29 | 20d | 0d | SIC- Cost; Electrical Forman [135.79 h]; Electrical Technician [135.79 h]; Electrical Helper [135.79 h]; Labor [135.79 h]; Excavator [32.22 h]; Excavator Operator [135.79 h]; Dumper Operator [135.79 h]; Dumper Truck [100 h] | 20,112.76 | Z A |
| SDR-2-CON-SL-ZA-3030 |  | Excavation for LV Cable Trenches | 21d | 2026-08-01 A | 2026-11-01 | SDR-2-CON-SL-ZA-3640 FF | 50% | 1d | 2026-08-30 | 2026-09-22 | 71d | 5d | SIC- Cost; Electrical Forman [135.79 h]; Electrical Technician [135.79 h]; Electrical Helper [135.79 h]; Labor [135.79 h]; Excavator [32.22 h]; Excavator Operator [135.79 h]; Dumper Operator [135.79 h]; Dumper Truck [100 h] | 20,112.76 | Z A |

| ID | WBS | Activity | Duration | Start | Finish | Predecessors | Complete | Remaining | Planned start | Planned finish | Total float | Free float | Resources | Cost | ZONE A |
| --- | --- | --- | --- | --- | --- | --- | --- | --- | --- | --- | --- | --- | --- | --- | --- |
|  | 11 | **Install Footings** |  | 2026-09-03 | 2026-11-07 |  |  |  |  |  |  |  |  |  |  |
| SDR-2-CON-SL-ZA-3040 |  | Install Footings | 21d | 2026-09-03 A | 2026-11-07 | SDR-2-CON-SL-ZA-3030 FF | 45% | 6d | 2026-09-24 | 2026-10-18 | 66d | 0d | SIC- Cost; Electrical Forman [67.9 h]; Electrical Technician [67.9 h]; Electrical Helper [67.9 h]; Labor [67.9 h] | 40,225.51 | Z A |
|  | 12 | **Backfilling** |  | 2026-11-08 | 2026-12-01 |  |  |  |  |  |  |  |  |  |  |
| SDR-2-CON-SL-ZA-3060 |  | Backfilling over LV Cables of Street lighting | 21d | 2026-11-08 | 2026-12-01 | SDR-2-CON-SL-ZA-3040 |  |  |  |  | 66d | 60d | SIC- Cost; Electrical Forman [67.9 h]; Electrical Technician [67.9 h]; Electrical Helper [67.9 h]; Labor [67.9 h]; Excavator [12 h]; Excavator Operator [67.9 h]; Dumper Operator [67.9 h]; Dumper Truck [50 h] | 40,225.51 | Z A |
|  | 13 | **Install pole** |  | 2027-03-01 | 2027-03-29 |  |  |  |  |  |  |  |  |  |  |
| SDR-2-CON-SL-ZA-3050 |  | Install Pole | 21d | 2027-03-01 | 2027-03-29 | SDR-2-CON-MV-ZA-1100, SDR-2-CON-SL-ZA-3550 SS+10d, SDR-2-CON-SL-ZA-3520, SDR-2-CON-SL-ZA-3060 FS+15d |  |  |  |  | 6d | 0d | SIC- Cost [80938.3]; Electrical Forman [25.6 h]; Electrical Technician [25.6 h]; Electrical Helper [25.6 h]; Labor [25.6 h] | 281,578.51 | Z A |
|  | 22 | **Street Lighting Network IN ( PH2-A-MCE0 )** |  | 2026-07-02 | 2027-01-10 |  |  |  |  |  |  |  |  |  |  |
|  | 10 | **Excavation** |  | 2026-07-02 | 2026-11-01 |  |  |  |  |  |  |  |  |  |  |
| SDR-2-CON-SL-ZA-3650 |  | Excavation for LV Cable Drawpits | 21d | 2026-07-02 A | 2026-11-01 | SDR-2-PRO-ST-E-1050, SDR-2-CON-SL-ZA-3640 FF, SDR-2-PRO-ST-E-1020 FF | 65% | 1d | 2026-08-11 | 2026-09-03 | 20d | 0d | SIC- Cost; Electrical Forman [135.79 h]; Electrical Technician [135.79 h]; Electrical Helper [135.79 h]; Labor [135.79 h]; Excavator [32.22 h]; Excavator Operator [135.79 h] | 20,112.76 | Z A |
| SDR-2-CON-SL-ZA-3070 |  | Excavation for LV Cable Trenches | 21d | 2026-07-14 A | 2026-11-01 | SDR-2-CON-SL-ZA-3650 FF | 50% | 1d | 2026-09-05 | 2026-09-29 | 92d | 5d | SIC- Cost; Electrical Forman [135.79 h]; Electrical Technician [135.79 h]; Electrical Helper [135.79 h]; Labor [135.79 h]; Excavator [32.22 h]; Excavator Operator [135.79 h] | 20,112.76 | Z A |
|  | 11 | **Install Footings** |  | 2026-09-03 | 2026-11-07 |  |  |  |  |  |  |  |  |  |  |
| SDR-2-CON-SL-ZA-3080 |  | Install Footings | 21d | 2026-09-03 A | 2026-11-07 | SDR-2-CON-SL-ZA-3070 FF | 30% | 6d | 2026-09-30 | 2026-10-24 | 87d | 0d | SIC- Cost; Electrical Forman [67.9 h]; Electrical Technician [67.9 h]; Electrical Helper [67.9 h]; Labor [67.9 h] | 40,225.51 | Z A |
|  | 12 | **Backfilling** |  | 2026-11-08 | 2026-12-01 |  |  |  |  |  |  |  |  |  |  |
| SDR-2-CON-SL-ZA-3100 |  | Backfilling over LV Cables of Street lighting | 21d | 2026-11-08 | 2026-12-01 | SDR-2-CON-SL-ZA-3080 |  |  |  |  | 87d | 0d | SIC- Cost; Electrical Forman [67.9 h]; Electrical Technician [67.9 h]; Electrical Helper [67.9 h]; Labor [67.9 h]; Excavator [17.4 h]; Excavator Operator [67.9 h]; Dumper Operator [67.9 h]; Dumper Truck [50 h] | 40,225.51 | Z A |
|  | 13 | **Install pole** |  | 2026-12-20 | 2027-01-10 |  |  |  |  |  |  |  |  |  |  |
| SDR-2-CON-SL-ZA-3090 |  | Install Pole | 19d | 2026-12-20 | 2027-01-10 | SDR-2-CON-ST-ZA-4040, SDR-2-CON-RW-ZA-3390 FS+2d, SDR-2-CON-RW-ZA-3270 FS+2d, SDR-2-CON-SL-ZA-3100 FS+15d |  |  |  |  | 87d | 35d | SIC- Cost; Electrical Forman [67.9 h]; Electrical Technician [67.9 h]; Electrical Helper [67.9 h]; Labor [67.9 h] | 281,578.51 | Z A |
|  | 23 | **Street Lighting Network IN ( PH2-A-MCF0 )** |  | 2026-07-01 | 2027-01-14 |  |  |  |  |  |  |  |  |  |  |
|  | 10 | **Excavation** |  | 2026-07-01 | 2026-11-10 |  |  |  |  |  |  |  |  |  |  |
| SDR-2-CON-SL-ZA-3660 |  | Excavation for LV Cable Drawpits | 21d | 2026-07-01 A | 2026-11-10 | SDR-2-CON-SL-ZA-3650 FF, SDR-2-PRO-ST-E-1040 FF, SDR-2-PRO-ST-E-1030 FF | 65% | 1d | 2026-08-17 | 2026-09-09 | 12d | 0d | SIC- Cost; Electrical Forman [135.79 h]; Electrical Technician [51.21 h]; Electrical Helper [135.79 h]; Labor [51.21 h]; Excavator [32.22 h]; Excavator Operator [135.79 h] | 20,112.76 | Z A |
| SDR-2-CON-SL-ZA-3110 |  | Excavation for LV Cable Trenches | 21d | 2026-07-14 A | 2026-11-10 | SDR-2-CON-SL-ZA-3660 FF | 50% | 1d | 2026-09-10 | 2026-10-05 | 12d | 0d | SIC- Cost; Electrical Forman [135.79 h]; Electrical Technician [51.21 h]; Electrical Helper [135.79 h]; Labor [51.21 h]; Excavator [32.22 h]; Excavator Operator [135.79 h] | 20,112.76 | Z A |
|  | 11 | **Install Footings** |  | 2026-08-31 | 2026-11-10 |  |  |  |  |  |  |  |  |  |  |
| SDR-2-CON-SL-ZA-3120 |  | Install Footings | 20d | 2026-08-31 A | 2026-11-10 | SDR-2-CON-SL-ZA-3110 FF | 30% | 2d | 2026-10-06 | 2026-10-28 | 12d | 0d | SIC- Cost; Electrical Forman [67.9 h]; Electrical Technician [67.9 h]; Electrical Helper [67.9 h]; Labor [67.9 h] | 40,225.51 | Z A |
|  | 12 | **Backfilling** |  | 2026-11-11 | 2026-12-03 |  |  |  |  |  |  |  |  |  |  |
| SDR-2-CON-SL-ZA-3140 |  | Backfilling over LV Cables of Street lighting | 20d | 2026-11-11 | 2026-12-03 | SDR-2-CON-SL-ZA-3120 |  |  |  |  | 12d | 0d | SIC- Cost; Electrical Forman [67.9 h]; Electrical Technician [67.9 h]; Electrical Helper [67.9 h]; Labor [67.9 h]; Excavator [12 h]; Excavator Operator [67.9 h] | 40,225.51 | Z A |

| ID | WBS | Activity | Duration | Start | Finish | Predecessors | Complete | Remaining | Planned start | Planned finish | Total float | Free float | Resources | Cost | ZONE A |
| --- | --- | --- | --- | --- | --- | --- | --- | --- | --- | --- | --- | --- | --- | --- | --- |
|  | 13 | **Install pole** |  | 2026-12-22 | 2027-01-14 |  |  |  |  |  |  |  |  |  |  |
| SDR-2-CON-SL-ZA-3130 |  | Install Pole | 21d | 2026-12-22 | 2027-01-14 | SDR-2-CON-SL-ZA-3140 FS+15d |  |  |  |  | 12d | 0d | SIC- Cost; Electrical Forman [67.9 h]; Electrical Technician [67.9 h]; Electrical Helper [67.9 h]; Labor [135.79 h] | 281,578.51 | Z A |
|  | 24 | **Street Lighting Network IN ( PH2-A-MCG0 )** |  | 2026-07-06 | 2027-01-03 |  |  |  |  |  |  |  |  |  |  |
|  | 10 | **Excavation** |  | 2026-07-06 | 2026-11-10 |  |  |  |  |  |  |  |  |  |  |
| SDR-2-CON-SL-ZA-3670 |  | Excavation for LV Cable Drawpits | 21d | 2026-07-06 A | 2026-11-10 | SDR-2-CON-SL-ZA-3660 FF | 65% | 1d | 2026-08-23 | 2026-09-15 | 23d | 0d | SIC- Cost; Electrical Forman [135.79 h]; Electrical Technician [135.79 h]; Electrical Helper [135.79 h]; Labor [135.79 h]; Excavator [20 h]; Excavator Operator [135.79 h] | 20,112.76 | Z A |
| SDR-2-CON-SL-ZA-3150 |  | Excavation for LV Cable Trenches | 21d | 2026-07-16 A | 2026-11-10 | SDR-2-CON-SL-ZA-3670 FF | 50% | 1d | 2026-09-16 | 2026-10-11 | 93d | 0d | SIC- Cost; Electrical Forman [135.79 h]; Electrical Technician [135.79 h]; Electrical Helper [135.79 h]; Labor [135.79 h]; Excavator [20 h]; Excavator Operator [135.79 h] | 20,112.76 | Z A |
|  | 11 | **Install Footings** |  | 2026-09-03 | 2026-11-10 |  |  |  |  |  |  |  |  |  |  |
| SDR-2-CON-SL-ZA-3160 |  | Install Footings | 20d | 2026-09-03 A | 2026-11-10 | SDR-2-CON-SL-ZA-3150 FF | 30% | 5d | 2026-10-12 | 2026-11-03 | 93d | 0d | SIC- Cost; Electrical Forman [67.9 h]; Electrical Technician [67.9 h]; Electrical Helper [67.9 h]; Labor [67.9 h] | 40,225.51 | Z A |
|  | 12 | **Backfilling** |  | 2026-11-11 | 2026-12-02 |  |  |  |  |  |  |  |  |  |  |
| SDR-2-CON-SL-ZA-3180 |  | Backfilling over LV Cables of Street lighting | 19d | 2026-11-11 | 2026-12-02 | SDR-2-CON-SL-ZA-3160 |  |  |  |  | 93d | 0d | SIC- Cost; Electrical Forman [67.9 h]; Electrical Technician [67.9 h]; Electrical Helper [67.9 h]; Labor [67.9 h]; Excavator [12 h]; Excavator Operator [67.9 h] | 40,225.51 | Z A |
|  | 13 | **Install pole** |  | 2026-12-21 | 2027-01-03 |  |  |  |  |  |  |  |  |  |  |
| SDR-2-CON-SL-ZA-3170 |  | Install Pole | 12d | 2026-12-21 | 2027-01-03 | SDR-2-CON-SL-ZA-3180 FS+15d |  |  |  |  | 93d | 0d | SIC- Cost; Electrical Forman [67.9 h]; Electrical Technician [67.9 h]; Electrical Helper [67.9 h]; Labor [67.9 h] | 281,578.51 | Z A |
|  | 25 | **Street Lighting Network IN ( PH2-A-MCH0 )** |  | 2026-07-20 | 2027-01-09 |  |  |  |  |  |  |  |  |  |  |
|  | 10 | **Excavation** |  | 2026-07-20 | 2026-11-10 |  |  |  |  |  |  |  |  |  |  |
| SDR-2-CON-SL-ZA-3680 |  | Excavation for LV Cable Drawpits | 21d | 2026-07-20 A | 2026-11-10 | SDR-2-CON-SL-ZA-3670 FF | 65% | 1d | 2026-08-30 | 2026-09-22 | 23d | 0d | SIC- Cost; Electrical Forman [135.79 h]; Electrical Technician [135.79 h]; Electrical Helper [135.79 h]; Labor [135.79 h]; Excavator [20 h]; Excavator Operator [135.79 h] | 20,112.76 | Z A |
| SDR-2-CON-SL-ZA-3190 |  | Excavation for LV Cable Trenches | 21d | 2026-08-01 A | 2026-11-10 | SDR-2-CON-SL-ZA-3680 FF | 50% | 1d | 2026-09-24 | 2026-10-18 | 23d | 0d | SIC- Cost; Electrical Forman [135.79 h]; Electrical Technician [135.79 h]; Electrical Helper [135.79 h]; Labor [135.79 h]; Excavator [20 h]; Excavator Operator [135.79 h] | 20,112.76 | Z A |
|  | 11 | **Install Footings** |  | 2026-09-03 | 2026-11-10 |  |  |  |  |  |  |  |  |  |  |
| SDR-2-CON-SL-ZA-3200 |  | Install Footings | 20d | 2026-09-03 A | 2026-11-10 | SDR-2-CON-SL-ZA-3190 FF | 30% | 5d | 2026-10-19 | 2026-11-10 | 23d | 0d | SIC- Cost; Electrical Forman [67.9 h]; Electrical Technician [67.9 h]; Electrical Helper [67.9 h]; Labor [67.9 h] | 40,225.51 | Z A |
|  | 12 | **Backfilling** |  | 2026-11-11 | 2026-12-02 |  |  |  |  |  |  |  |  |  |  |
| SDR-2-CON-SL-ZA-3220 |  | Backfilling over LV Cables of Street lighting | 19d | 2026-11-11 | 2026-12-02 | SDR-2-CON-SL-ZA-3200 |  |  |  |  | 23d | 0d | SIC- Cost; Electrical Forman [67.9 h]; Electrical Technician [67.9 h]; Electrical Helper [67.9 h]; Labor [67.9 h]; Excavator [12 h]; Excavator Operator [67.9 h]; Dumper Operator [67.9 h]; Dumper Truck [50 h] | 40,225.51 | Z A |
|  | 13 | **Install pole** |  | 2026-12-21 | 2027-01-09 |  |  |  |  |  |  |  |  |  |  |
| SDR-2-CON-SL-ZA-3210 |  | Install Pole | 17d | 2026-12-21 | 2027-01-09 | SDR-2-CON-SL-ZA-3220 FS+15d |  |  |  |  | 23d | 17d | SIC- Cost; Electrical Forman [67.9 h]; Electrical Technician [67.9 h]; Electrical Helper [67.9 h]; Labor [67.9 h] | 281,578.51 | Z A |
|  | 27 | **Street Lighting Network IN ( PH2-ART-MC10 )** |  | 2026-07-20 | 2027-01-13 |  |  |  |  |  |  |  |  |  |  |
|  | 10 | **Excavation** |  | 2026-07-20 | 2026-11-10 |  |  |  |  |  |  |  |  |  |  |
| SDR-2-CON-SL-ZA-3690 |  | Excavation for LV Cable Drawpits | 21d | 2026-07-20 A | 2026-11-10 | SDR-2-CON-SL-ZA-3680 FF | 70% | 1d | 2026-09-06 | 2026-09-30 | 33d | 0d | SIC- Cost; Electrical Forman [135.79 h]; Electrical Technician [135.79 h]; Electrical Helper [135.79 h]; Labor [135.79 h]; Excavator [26 h]; Excavator Operator [135.79 h] | 17,966.79 | Z A |
| SDR-2-CON-SL-ZA-2910 |  | Excavation for LV Cable Trenches | 21d | 2026-08-01 A | 2026-11-10 | SDR-2-CON-SL-ZA-3690 FF | 50% | 1d | 2026-10-01 | 2026-10-25 | 33d | 0d | SIC- Cost; Electrical Forman [135.79 h]; Electrical Technician [135.79 h]; Electrical Helper [135.79 h]; Labor [135.79 h]; Excavator [26 h]; Excavator Operator [135.79 h] | 17,966.79 | Z A |

| ID | WBS | Activity | Duration | Start | Finish | Predecessors | Complete | Remaining | Planned start | Planned finish | Total float | Free float | Resources | Cost | ZONE A |
| --- | --- | --- | --- | --- | --- | --- | --- | --- | --- | --- | --- | --- | --- | --- | --- |
|  | 11 | **Install Footings** |  | 2026-09-03 | 2026-11-10 |  |  |  |  |  |  |  |  |  |  |
| SDR-2-CON-SL-ZA-2920 |  | Install Footings | 21d | 2026-09-03 A | 2026-11-10 | SDR-2-CON-SL-ZA-2910 FF | 30% | 6d | 2026-10-26 | 2026-11-18 | 33d | 0d | SIC- Cost; Electrical Forman [67.9 h]; Electrical Technician [67.9 h]; Electrical Helper [67.9 h]; Labor [67.9 h] | 35,933.57 | Z A |
|  | 12 | **Backfilling** |  | 2026-11-11 | 2026-12-05 |  |  |  |  |  |  |  |  |  |  |
| SDR-2-CON-SL-ZA-2940 |  | Backfilling over LV Cables of Street lighting | 21d | 2026-11-11 | 2026-12-05 | SDR-2-CON-SL-ZA-2920 |  |  |  |  | 33d | 0d | SIC- Cost; Electrical Forman [67.9 h]; Electrical Technician [67.9 h]; Electrical Helper [67.9 h]; Labor [67.9 h]; Excavator [12 h]; Excavator Operator [67.9 h] | 35,933.57 | Z A |
|  | 13 | **Install pole** |  | 2026-12-21 | 2027-01-13 |  |  |  |  |  |  |  |  |  |  |
| SDR-2-CON-SL-ZA-2930 |  | Install Pole | 21d | 2026-12-21 | 2027-01-13 | SDR-2-CON-RW-ZA-2320, SDR-2-CON-SL-ZA-2920, SDR-2-CON-SL-ZA-2940 FS+13d |  |  |  |  | 88d | 79d | SIC- Cost; Electrical Forman [67.9 h]; Electrical Technician [67.9 h]; Electrical Helper [67.9 h]; Labor [67.9 h] | 251,534.94 | Z A |
|  | 10 | **Lighting Pole Panels** |  | 2026-11-11 | 2027-03-02 |  |  |  |  |  |  |  |  |  |  |
|  | 1 | **Excavation** |  | 2026-11-11 | 2026-12-05 |  |  |  |  |  |  |  |  |  |  |
| SDR-2-CON-SL-ZA-2650 |  | Street Lighting Panels Excavation | 21d | 2026-11-11 | 2026-12-05 | SDR-2-CON-SL-ZA-3690 SS+5d, SDR-2-PRO-ST-E-1110, SDR-2-PRO-MAL-E-1080 |  |  |  |  | 39d | 0d | SIC- Cost; Electrical Forman [67.9 h]; Electrical Technician [76.43 h]; Electrical Helper [67.9 h]; Labor [76.43 h]; Excavator [8.2 h]; Excavator Operator [76.43 h] | 3,965 | Z A |
|  | 2 | **Install Footings** |  | 2026-12-06 | 2026-12-28 |  |  |  |  |  |  |  |  |  |  |
| SDR-2-CON-SL-ZA-2760 |  | Installation Footings Street Lighting Panels | 20d | 2026-12-06 | 2026-12-28 | SDR-2-CON-SL-ZA-2650 |  |  |  |  | 48d | 0d | SIC- Cost; Electrical Forman [74.52 h]; Electrical Technician [74.52 h]; Electrical Helper [74.52 h]; Labor [74.52 h] | 3,965 | Z A |
|  | 3 | **Backfilling** |  | 2026-12-29 | 2027-01-18 |  |  |  |  |  |  |  |  |  |  |
| SDR-2-CON-SL-ZA-2770 |  | Street Lighting Panels Backfilling | 18d | 2026-12-29 | 2027-01-18 | SDR-2-CON-SL-ZA-2760 |  |  |  |  | 48d | 0d | SIC- Cost; Electrical Forman [67.9 h]; Electrical Technician [67.9 h]; Electrical Helper [67.9 h]; Labor [67.9 h]; Excavator [6 h]; Excavator Operator [67.9 h]; Dumper Operator [67.9 h]; Dumper Truck [50 h] | 3,965 | Z A |
|  | 4 | **Install pole** |  | 2027-02-06 | 2027-03-02 |  |  |  |  |  |  |  |  |  |  |
| SDR-2-CON-SL-ZA-2780 |  | Street Lighting Panels Installation | 21d | 2027-02-06 | 2027-03-02 | SDR-2-CON-SL-ZA-2770 FS+15d |  |  |  |  | 48d | 43d | SIC- Cost; Electrical Forman [85.98 h]; Electrical Technician [85.98 h]; Electrical Helper [85.98 h]; Labor [85.98 h] | 27,755.01 | Z A |
|  | 11 | **Ring Main Unit** |  | 2026-11-11 | 2027-01-31 |  |  |  |  |  |  |  |  |  |  |
|  | 1 | **Leveling** |  | 2026-11-11 | 2026-12-03 |  |  |  |  |  |  |  |  |  |  |
| SDR-2-CON-SL-ZA-2660 |  | Ring Main Unit leveling | 20d | 2026-11-11 | 2026-12-03 | SDR-2-CON-SL-ZA-2650 SS |  |  |  |  | 39d | 0d | SIC- Cost; Electrical Forman [50.28 h]; Electrical Technician [50.28 h]; Electrical Helper [50.28 h]; Labor [50.28 h] | 11,325.99 | Z A |
|  | 2 | **Lean Concrete** |  | 2026-12-05 | 2026-12-27 |  |  |  |  |  |  |  |  |  |  |
| SDR-2-CON-SL-ZA-2790 |  | Ring Main Unit Lean Concrete | 20d | 2026-12-05 | 2026-12-27 | SDR-2-CON-SL-ZA-2660 |  |  |  |  | 73d | 0d | SIC- Cost; Electrical Forman [67.9 h]; Electrical Technician [67.9 h]; Electrical Helper [67.9 h]; Labor [67.9 h] | 22,651.97 | Z A |
|  | 3 | **Installation** |  | 2027-01-09 | 2027-01-31 |  |  |  |  |  |  |  |  |  |  |
| SDR-2-CON-SL-ZA-2800 |  | Ring Main Unit installation for Street Lighting | 20d | 2027-01-09 | 2027-01-31 | SDR-2-PRO-ST-M-1060, SDR-2-PRO-ST-M-1070, SDR-2-CON-SL-ZA-2790 FS+10d |  |  |  |  | 73d | 43d | SIC- Cost; Electrical Forman [135.79 h]; Electrical Technician [135.79 h]; Electrical Helper [135.79 h]; Labor [135.79 h] | 79,281.91 | Z A |
|  | 12 | **Feeder Pillars** |  | 2026-11-14 | 2027-02-08 |  |  |  |  |  |  |  |  |  |  |
|  | 1 | **Leveling** |  | 2026-11-14 | 2026-12-06 |  |  |  |  |  |  |  |  |  |  |
| SDR-2-CON-SL-ZA-2670 |  | Feeder Pillars Leveling | 20d | 2026-11-14 | 2026-12-06 | SDR-2-CON-SL-ZA-2660 SS, SDR-2-PRO-ST-E-1130, SDR-2-PRO-MAL-E-1100 |  |  |  |  | 37d | 0d | SIC- Cost; Electrical Forman [67.9 h]; Electrical Technician [67.9 h]; Electrical Helper [67.9 h]; Labor [67.9 h] | 1,062.69 | Z A |

| ID | WBS | Activity | Duration | Start | Finish | Predecessors | Complete | Remaining | Planned start | Planned finish | Total float | Free float | Resources | Cost | ZONE A |
| --- | --- | --- | --- | --- | --- | --- | --- | --- | --- | --- | --- | --- | --- | --- | --- |
|  | 2 | **Lean Concrete** |  | 2026-12-07 | 2026-12-29 |  |  |  |  |  |  |  |  |  |  |
| SDR-2-CON-SL-ZA-2810 |  | Feeder Pillars Lean Concrete | 20d | 2026-12-07 | 2026-12-29 | SDR-2-CON-SL-ZA-2670 |  |  |  |  | 66d | 0d | SIC- Cost; Electrical Forman [67.9 h]; Electrical Technician [67.9 h]; Electrical Helper [67.9 h]; Labor [67.9 h] | 2,125.37 | Z A |
|  | 3 | **Installation** |  | 2027-01-17 | 2027-02-08 |  |  |  |  |  |  |  |  |  |  |
| SDR-2-CON-SL-ZA-2820 |  | Feeder Pillars Installation | 20d | 2027-01-17 | 2027-02-08 | SDR-2-CON-MV-ZA-1100, SDR-2-CON-SL-ZA-2810 FS+15d |  |  |  |  | 66d | 53d | SIC- Cost; Electrical Forman [135.79 h]; Electrical Technician [135.79 h]; Electrical Helper [135.79 h]; Labor [135.79 h] | 7,438.82 | Z A |
|  | 13 | **KWH Frame** |  | 2026-12-31 | 2027-03-16 |  |  |  |  |  |  |  |  |  |  |
|  | 1 | **Leveling** |  | 2026-12-31 | 2027-01-23 |  |  |  |  |  |  |  |  |  |  |
| SDR-2-CON-SL-ZA-2680 |  | KWH meter mounting frame Leveling | 20d | 2026-12-31 | 2027-01-23 | SDR-2-CON-SL-ZA-2670 SS+1d, SDR-2-PRO-ST-E-1120, SDR-2-PRO-MAL-E-1090 |  |  |  |  | 6d | 0d | SIC- Cost; Electrical Forman [64.01 h]; Electrical Technician [67.9 h]; Electrical Helper [67.38 h]; Labor [67.9 h] | 1,416.84 | Z A |
|  | 2 | **Lean Concrete** |  | 2027-01-24 | 2027-02-15 |  |  |  |  |  |  |  |  |  |  |
| SDR-2-CON-SL-ZA-2830 |  | KWH meter mounting frame Lean Concrete | 20d | 2027-01-24 | 2027-02-15 | SDR-2-CON-SL-ZA-2680 |  |  |  |  | 40d | 0d | SIC- Cost; Electrical Forman [64.01 h]; Electrical Technician [95.54 h]; Electrical Helper [67.9 h]; Labor [95.54 h] | 2,833.69 | Z A |
|  | 3 | **Installation** |  | 2027-02-16 | 2027-03-16 |  |  |  |  |  |  |  |  |  |  |
| SDR-2-CON-SL-ZA-2840 |  | KWH meter mounting frame installation | 20d | 2027-02-16 | 2027-03-16 | SDR-2-CON-SL-ZA-2830 |  |  |  |  | 40d | 10d | SIC- Cost; Electrical Forman [95.54 h]; Electrical Technician [95.54 h]; Electrical Helper [135.79 h]; Labor [95.54 h] | 9,917.9 | Z A |
|  | 14 | **Street Lighting Sub-station** |  | 2027-01-02 | 2027-03-18 |  |  |  |  |  |  |  |  |  |  |
|  | 1 | **Leveling** |  | 2027-01-02 | 2027-01-24 |  |  |  |  |  |  |  |  |  |  |
| SDR-2-CON-SL-ZA-2690 |  | Unit Substation Leveling | 20d | 2027-01-02 | 2027-01-24 | SDR-2-CON-SL-ZA-2680 SS+1d, SDR-2-PRO-ST-E-1100, SDR-2-PRO-MAL-E-1070 |  |  |  |  | 30d | 0d | SIC- Cost; Electrical Forman [50.28 h]; Electrical Technician [67.9 h]; Electrical Helper [99.36 h]; Labor [67.9 h] | 21,900.12 | Z A |
|  | 2 | **Lean Concrete** |  | 2027-01-25 | 2027-02-16 |  |  |  |  |  |  |  |  |  |  |
| SDR-2-CON-SL-ZA-2850 |  | Unit Substation Lean Concrete | 20d | 2027-01-25 | 2027-02-16 | SDR-2-CON-SL-ZA-2690 |  |  |  |  | 38d | 0d | SIC- Cost; Electrical Forman [67.9 h]; Electrical Technician [67.9 h]; Electrical Helper [67.9 h]; Labor [67.9 h] | 43,800.24 | Z A |
|  | 3 | **Installation** |  | 2027-02-17 | 2027-03-18 |  |  |  |  |  |  |  |  |  |  |
| SDR-2-CON-SL-ZA-2860 |  | Unit Substation Install for Street Lighting | 21d | 2027-02-17 | 2027-03-18 | SDR-2-CON-SL-ZA-2850 |  |  |  |  | 38d | 8d | SIC- Cost; Electrical Forman [80.46 h]; Electrical Technician [80.46 h]; Electrical Helper [80.46 h]; Labor [80.46 h] | 153,300.82 | Z A |
|  | 2 | **MV Network** |  | 2026-07-14 | 2027-01-05 |  |  |  |  |  |  |  |  |  |  |
|  | 1 | **LOOP 3** |  | 2026-07-14 | 2026-11-25 |  |  |  |  |  |  |  |  |  |  |
|  | 6 | **Excavation** |  | 2026-07-14 | 2026-11-01 |  |  |  |  |  |  |  |  |  |  |
| SDR-2-CON-MV-ZA-1000 |  | Excavation Works | 21d | 2026-07-14 A | 2026-11-01 | SDR-2-CON-SL-ZA-1000 FF | 70% | 1d | 2026-08-09 | 2026-09-01 | 6d | 0d | SIC- Cost; Electrical Forman [135.79 h]; Electrical Technician [135.79 h]; Electrical Helper [135.79 h]; Labor [135.79 h]; Excavator [16 h]; Excavator Operator [135.79 h] | 184,030.93 | Z A |
|  | 7 | **Pipe laying** |  | 2026-07-25 | 2026-11-01 |  |  |  |  |  |  |  |  |  |  |
| SDR-2-CON-MV-ZA-1070 |  | Pipe Laying | 20d | 2026-07-25 A | 2026-11-01 | SDR-2-CON-MV-ZA-1000 FF | 70% | 1d | 2026-09-02 | 2026-09-26 | 20d | 0d | SIC- Cost; Electrical Forman [135.79 h]; Electrical Technician [135.79 h]; Electrical Helper [135.79 h]; Labor [135.79 h] | 368,061.84 | Z A |

| ID | WBS | Activity | Duration | Start | Finish | Predecessors | Complete | Remaining | Planned start | Planned finish | Total float | Free float | Resources | Cost | ZONE A |
| --- | --- | --- | --- | --- | --- | --- | --- | --- | --- | --- | --- | --- | --- | --- | --- |
|  | 8 | **Backfilling** |  | 2026-08-03 | 2026-11-01 |  |  |  |  |  |  |  |  |  |  |
| SDR-2-CON-MV-ZA-1150 |  | Backfilling Works | 21d | 2026-08-03 A | 2026-11-01 | SDR-2-CON-MV-ZA-1070 FF, SDR-2-PRO-MAL-E-1000 | 70% | 1d | 2026-09-27 | 2026-10-20 | 20d | 0d | SIC- Cost; Electrical Forman [135.79 h]; Electrical Technician [135.79 h]; Electrical Helper [401.25 h]; Labor [135.79 h]; Excavator [12 h]; Excavator Operator [135.79 h] | 184,030.93 | Z A |
|  | 9 | **Pulling Cable** |  | 2026-11-02 | 2026-11-25 |  |  |  |  |  |  |  |  |  |  |
| SDR-2-CON-MV-ZA-1100 |  | Pulling Cable | 21d | 2026-11-02 | 2026-11-25 | SDR-2-PRO-ST-E-1000, SDR-2-CON-MV-ZA-1070, SDR-2-CON-MV-ZA-1150, SDR-2-PRO-ST-E-1010 |  |  |  |  | 20d | 6d | SIC- Cost; Electrical Forman [135.79 h]; Electrical Technician [135.79 h]; Electrical Helper [135.79 h]; Labor [135.79 h] | 1,104,185.52 | Z A |
|  | 2 | **LOOP 4** |  | 2026-07-25 | 2027-01-05 |  |  |  |  |  |  |  |  |  |  |
|  | 6 | **Excavation** |  | 2026-07-25 | 2026-11-01 |  |  |  |  |  |  |  |  |  |  |
| SDR-2-CON-MV-ZA-1160 |  | Excavation Works | 21d | 2026-07-25 A | 2026-11-01 | SDR-2-CON-MV-ZA-1000 FF | 70% | 1d | 2026-08-20 | 2026-09-13 | 6d | 0d | SIC- Cost; Electrical Forman [135.79 h]; Electrical Technician [135.79 h]; Electrical Helper [135.79 h]; Labor [135.79 h] | 184,030.93 | Z A |
|  | 7 | **Pipe laying** |  | 2026-08-13 | 2026-11-01 |  |  |  |  |  |  |  |  |  |  |
| SDR-2-CON-MV-ZA-1170 |  | Pipe Laying | 21d | 2026-08-13 A | 2026-11-01 | SDR-2-CON-MV-ZA-1160 FF | 62% | 1d | 2026-09-14 | 2026-10-08 | 6d | 0d | SIC- Cost; Electrical Forman [135.79 h]; Electrical Technician [135.79 h]; Electrical Helper [135.79 h]; Labor [135.79 h] | 368,061.84 | Z A |
|  | 8 | **Backfilling** |  | 2026-11-02 | 2026-11-25 |  |  |  |  |  |  |  |  |  |  |
| SDR-2-CON-MV-ZA-1190 |  | Backfilling Works | 21d | 2026-11-02 | 2026-11-25 | SDR-2-CON-MV-ZA-1170 |  |  |  |  | 6d | 0d | SIC- Cost; Electrical Forman [19.2 h]; Electrical Technician [19.2 h]; Electrical Helper [19.2 h]; Labor [19.2 h]; Excavator [12 h]; Excavator Operator [67.9 h] | 184,030.93 | Z A |
|  | 9 | **Pulling Cable** |  | 2026-12-13 | 2027-01-05 |  |  |  |  |  |  |  |  |  |  |
| SDR-2-CON-MV-ZA-1180 |  | Pulling Cable | 21d | 2026-12-13 | 2027-01-05 | SDR-2-CON-MV-ZA-1100, SDR-2-CON-MV-ZA-1170, SDR-2-CON-MV-ZA-1190 FS+14d |  |  |  |  | 6d | 0d | SIC- Cost; Electrical Forman [67.9 h]; Electrical Technician [67.9 h]; Electrical Helper [67.9 h]; Labor [67.9 h] | 1,104,185.52 | Z A |
|  | 3 | **LOOP 5** |  | 2026-08-13 | 2026-12-29 |  |  |  |  |  |  |  |  |  |  |
|  | 6 | **Excavation** |  | 2026-08-13 | 2026-11-01 |  |  |  |  |  |  |  |  |  |  |
| SDR-2-CON-MV-ZA-1200 |  | Excavation Works | 21d | 2026-08-13 A | 2026-11-01 | SDR-2-CON-MV-ZA-1160 FF | 50% | 1d | 2026-08-31 | 2026-09-24 | 12d | 0d | SIC- Cost; Labor [135.79 h]; Excavator [20 h]; Excavator Operator [135.79 h] | 184,030.93 | Z A |
|  | 7 | **Pipe laying** |  | 2026-08-13 | 2026-11-01 |  |  |  |  |  |  |  |  |  |  |
| SDR-2-CON-MV-ZA-1210 |  | Pipe Laying | 21d | 2026-08-13 A | 2026-11-01 | SDR-2-CON-MV-ZA-1200 FF | 50% | 1d | 2026-09-26 | 2026-10-19 | 12d | 0d | SIC- Cost; Electrical Forman [67.9 h]; Electrical Technician [67.9 h]; Electrical Helper [67.9 h]; Labor [67.9 h] | 368,061.84 | Z A |
|  | 8 | **Backfilling** |  | 2026-11-02 | 2026-11-25 |  |  |  |  |  |  |  |  |  |  |
| SDR-2-CON-MV-ZA-1230 |  | Backfilling Works | 21d | 2026-11-02 | 2026-11-25 | SDR-2-CON-MV-ZA-1210 |  |  |  |  | 12d | 0d | SIC- Cost; Labor [67.9 h]; Excavator [12 h]; Excavator Operator [67.9 h] | 184,030.93 | Z A |
|  | 9 | **Pulling Cable** |  | 2026-12-06 | 2026-12-29 |  |  |  |  |  |  |  |  |  |  |
| SDR-2-CON-MV-ZA-1220 |  | Pulling Cable | 21d | 2026-12-06 | 2026-12-29 | SDR-2-CON-MV-ZA-1210, SDR-2-CON-MV-ZA-1230 FS+8d |  |  |  |  | 12d | 0d | SIC- Cost; Electrical Forman [67.9 h]; Electrical Technician [67.9 h]; Electrical Helper [67.9 h]; Labor [135.79 h] | 1,104,185.52 | Z A |
|  | 4 | **LOOP 6** |  | 2026-08-13 | 2026-12-27 |  |  |  |  |  |  |  |  |  |  |
|  | 6 | **Excavation** |  | 2026-08-13 | 2026-11-01 |  |  |  |  |  |  |  |  |  |  |
| SDR-2-CON-MV-ZA-1240 |  | Excavation Works | 21d | 2026-08-13 A | 2026-11-01 | SDR-2-CON-MV-ZA-1200 FF | 50% | 1d | 2026-09-09 | 2026-10-04 | 41d | 0d | SIC- Cost; Labor [135.79 h]; Excavator [20 h]; Excavator Operator [135.79 h] | 184,030.93 | Z A |

| ID | WBS | Activity | Duration | Start | Finish | Predecessors | Complete | Remaining | Planned start | Planned finish | Total float | Free float | Resources | Cost | ZONE A |
| --- | --- | --- | --- | --- | --- | --- | --- | --- | --- | --- | --- | --- | --- | --- | --- |
|  | 7 | **Pipe laying** |  | 2026-08-13 | 2026-11-01 |  |  |  |  |  |  |  |  |  |  |
| SDR-2-CON-MV-ZA-1250 |  | Pipe Laying | 20d | 2026-08-13 A | 2026-11-01 | SDR-2-CON-MV-ZA-1240 FF | 50% | 1d | 2026-10-05 | 2026-10-27 | 41d | 0d | SIC- Cost; Electrical Forman [67.9 h]; Electrical Technician [67.9 h]; Electrical Helper [67.9 h]; Labor [135.79 h] | 368,061.84 | Z A |
|  | 8 | **Backfilling** |  | 2026-11-02 | 2026-11-25 |  |  |  |  |  |  |  |  |  |  |
| SDR-2-CON-MV-ZA-1270 |  | Backfilling Works | 21d | 2026-11-02 | 2026-11-25 | SDR-2-CON-MV-ZA-1250 |  |  |  |  | 41d | 0d | SIC- Cost; Labor [67.9 h]; Excavator [12 h]; Excavator Operator [67.9 h] | 184,030.93 | Z A |
|  | 9 | **Pulling Cable** |  | 2026-12-03 | 2026-12-27 |  |  |  |  |  |  |  |  |  |  |
| SDR-2-CON-MV-ZA-1260 |  | Pulling Cable | 21d | 2026-12-03 | 2026-12-27 | SDR-2-CON-MV-ZA-1100, SDR-2-CON-MV-ZA-1250, SDR-2-CON-MV-ZA-1270 FS+6d |  |  |  |  | 41d | 2d | SIC- Cost; Electrical Forman [67.9 h]; Electrical Technician [67.9 h]; Electrical Helper [67.9 h]; Labor [67.9 h] | 1,104,185.52 | Z A |
|  | 3 | **TELECOMMUNICATIONS Works** |  | 2026-07-09 | 2027-03-06 |  |  |  |  |  |  |  |  |  |  |
|  | 1 | **TELECOMMUNICATION IN ( PH2-COL-MC10 )** |  | 2026-09-01 | 2027-03-01 |  |  |  |  |  |  |  |  |  |  |
|  | 3 | **Ducts** |  | 2026-09-13 | 2027-03-01 |  |  |  |  |  |  |  |  |  |  |
|  | 2 | **Excavation** |  | 2026-09-13 | 2026-12-10 |  |  |  |  |  |  |  |  |  |  |
| SDR-2-CON-TE-ZA-4560 |  | Excavation for telecom crossing ducts | 21d | 2026-09-13 A | 2026-11-16 | SDR-2-CON-SL-ZA-1000 FF | 50% | 14d | 2026-08-27 | 2026-09-20 | 16d | 0d | SIC- Cost; Excavator [12 h]; Excavator Operator [135.79 h] | 3,594.88 | Z A |
| SDR-2-CON-TE-ZA-1000 |  | Excavation for telecom trenches | 21d | 2026-11-17 | 2026-12-10 | SDR-2-CON-TE-ZA-4560 |  |  |  |  | 25d | 0d | SIC- Cost; Excavator [12 h]; Excavator Operator [135.79 h] | 3,594.88 | Z A |
|  | 5 | **Pipe laying** |  | 2026-12-12 | 2027-01-02 |  |  |  |  |  |  |  |  |  |  |
| SDR-2-CON-TE-ZA-1010 |  | HDPE Pipes for Telecom Installation | 19d | 2026-12-12 | 2027-01-02 | SDR-2-CON-TE-ZA-1000, SDR-2-PRO-MAS-E-1010 |  |  |  |  | 25d | 0d | SIC- Cost; Electrical Forman [135.79 h]; Electrical Technician [135.79 h]; Electrical Helper [135.79 h] | 14,379.51 | Z A |
|  | 6 | **Backfilling** |  | 2027-01-03 | 2027-01-23 |  |  |  |  |  |  |  |  |  |  |
| SDR-2-CON-TE-ZA-1020 |  | Backfilling over HDPE Telecom Pipes | 18d | 2027-01-03 | 2027-01-23 | SDR-2-CON-TE-ZA-1010 |  |  |  |  | 25d | 0d | SIC- Cost; Excavator [6 h]; Excavator Operator [6.03 h] | 7,189.75 | Z A |
|  | 7 | **Pulling Cable** |  | 2027-02-04 | 2027-03-01 |  |  |  |  |  |  |  |  |  |  |
| SDR-2-CON-TE-ZA-1840 |  | Pulling Cable | 21d | 2027-02-04 | 2027-03-01 | SDR-2-CON-TE-ZA-1020 FS+10d |  |  |  |  | 25d | 0d | SIC- Cost; Electrical Forman [67.9 h]; Electrical Technician [67.9 h]; Electrical Helper [67.9 h] | 43,138.51 | Z A |
|  | 4 | **Manholes** |  | 2026-09-01 | 2027-02-01 |  |  |  |  |  |  |  |  |  |  |
|  | 1 | **Excavation** |  | 2026-09-01 | 2026-09-24 |  |  |  |  |  |  |  |  |  |  |
| SDR-2-CON-TE-ZA-1030 |  | Excavation for Telecom Manholes | 21d | 2026-09-01 A | 2026-09-24 A | SDR-2-CON-TE-ZA-4560 FF | 100% |  | 2026-08-27 | 2026-09-20 |  |  | SIC- Cost; Excavator [12 h]; Excavator Operator [67.9 h] | 8,073.39 | Z A |
|  | 2 | **Bedding Work** |  | 2026-09-15 | 2026-11-17 |  |  |  |  |  |  |  |  |  |  |
| SDR-2-CON-TE-ZA-1850 |  | Sand bedding for Telecom Manhole | 19d | 2026-09-15 A | 2026-11-17 | SDR-2-CON-TE-ZA-1030 FF | 50% | 14.26d | 2026-09-21 | 2026-10-13 | 15.74d | 0d | SIC- Cost; Labor [67.9 h]; Excavator [8.5 h]; Excavator Operator [67.9 h] | 5,382.27 | Z A |
|  | 3 | **Install Manholes** |  | 2026-09-21 | 2026-12-10 |  |  |  |  |  |  |  |  |  |  |
| SDR-2-CON-TE-ZA-1040 |  | Installation of Telecom Manhole | 20d | 2026-09-21 A | 2026-12-10 | SDR-2-CON-TE-ZA-1030, SDR-2-PRO-MAL-E-1050, SDR-2-CON-TE-ZA-1850 | 50% | 20d | 2026-10-21 | 2026-11-14 | 15.74d | 0d | SIC- Cost; Electrical Forman [67.9 h]; Electrical Technician [67.9 h]; Electrical Helper [67.9 h] | 24,220.18 | Z A |

| ID | WBS | Activity | Duration | Start | Finish | Predecessors | Complete | Remaining | Planned start | Planned finish | Total float | Free float | Resources | Cost | ZONE A |
| --- | --- | --- | --- | --- | --- | --- | --- | --- | --- | --- | --- | --- | --- | --- | --- |
|  | 4 | **Testting** |  | 2026-12-10 | 2026-12-27 |  |  |  |  |  |  |  |  |  |  |
| SDR-2-CON-TE-ZA-1050 |  | Telecom Manhole finishing works | 14d | 2026-12-10 | 2026-12-27 | SDR-2-CON-TE-ZA-1040 |  |  |  |  | 15.74d | 0d | SIC- Cost; Electrical Forman [60.34 h]; Electrical Technician [60.34 h]; Electrical Helper [60.34 h] | 5,382.27 | Z A |
|  | 5 | **Backfilling** |  | 2027-01-07 | 2027-02-01 |  |  |  |  |  |  |  |  |  |  |
| SDR-2-CON-TE-ZA-1060 |  | Backfilling over Telecom Manhole | 21d | 2027-01-07 | 2027-02-01 | SDR-2-CON-MV-ZA-1100, SDR-2-CON-TE-ZA-1050 FS+10d |  |  |  |  | 15.74d | 0d | SIC- Cost; Excavator [8.22 h]; Excavator Operator [67.9 h] | 10,764.52 | Z A |
|  | 2 | **TELECOMMUNICATION IN ( PH2-COL-MC20 )** |  | 2026-07-14 | 2026-12-29 |  |  |  |  |  |  |  |  |  |  |
|  | 3 | **Ducts** |  | 2026-07-14 | 2026-11-25 |  |  |  |  |  |  |  |  |  |  |
|  | 2 | **Excavation** |  | 2026-07-14 | 2026-11-01 |  |  |  |  |  |  |  |  |  |  |
| SDR-2-CON-TE-ZA-3210 |  | Excavation for telecom crossing ducts & trenches | 21d | 2026-07-14 A | 2026-11-01 | SDR-2-CON-SL-ZA-1000 FF | 80% | 1d | 2026-09-02 | 2026-09-27 | 3d | 0d | SIC- Cost; Excavator [12 h]; Excavator Operator [135.79 h] | 7,189.75 | Z A |
|  | 5 | **Pipe laying** |  | 2026-07-21 | 2026-11-01 |  |  |  |  |  |  |  |  |  |  |
| SDR-2-CON-TE-ZA-3220 |  | HDPE Pipes for Telecom Installation | 20d | 2026-07-21 A | 2026-11-01 | SDR-2-CON-TE-ZA-3210 FF | 70% | 1d | 2026-09-28 | 2026-10-20 | 130d | 0d | SIC- Cost; Electrical Forman [67.9 h]; Electrical Technician [67.9 h]; Electrical Helper [67.9 h] | 14,379.51 | Z A |
|  | 6 | **Backfilling** |  | 2026-08-01 | 2026-11-01 |  |  |  |  |  |  |  |  |  |  |
| SDR-2-CON-TE-ZA-3230 |  | Backfilling over HDPE Telecom Pipes | 20d | 2026-08-01 A | 2026-11-01 | SDR-2-CON-TE-ZA-3220 FF | 70% | 1d | 2026-10-21 | 2026-11-12 | 130d | 0d | SIC- Cost; Excavator [6 h]; Excavator Operator [6.03 h] | 7,189.75 | Z A |
|  | 7 | **Pulling Cable** |  | 2026-11-02 | 2026-11-25 |  |  |  |  |  |  |  |  |  |  |
| SDR-2-CON-TE-ZA-3280 |  | Pulling Cable | 21d | 2026-11-02 | 2026-11-25 | SDR-2-CON-TE-ZA-3230 |  |  |  |  | 130d | 100d | SIC- Cost; Electrical Forman [67.9 h]; Electrical Technician [67.9 h]; Electrical Helper [67.9 h] | 43,138.51 | Z A |
|  | 4 | **Manholes** |  | 2026-09-03 | 2026-12-29 |  |  |  |  |  |  |  |  |  |  |
|  | 1 | **Excavation** |  | 2026-09-03 | 2026-10-01 |  |  |  |  |  |  |  |  |  |  |
| SDR-2-CON-TE-ZA-3240 |  | Excavation for Telecom Manholes | 21d | 2026-09-03 A | 2026-10-01 A | SDR-2-CON-TE-ZA-3210 FF | 100% |  | 2026-09-02 | 2026-09-27 |  |  | SIC- Cost [5379.14]; Excavator [12 h]; Excavator Operator [67.9 h] | 8,073.39 | Z A |
|  | 2 | **Bedding Work** |  | 2026-09-05 | 2026-11-07 |  |  |  |  |  |  |  |  |  |  |
| SDR-2-CON-TE-ZA-3290 |  | Sand bedding for Telecom Manhole | 20d | 2026-09-05 A | 2026-11-07 | SDR-2-CON-TE-ZA-3240 FF | 60% | 6d | 2026-09-28 | 2026-10-20 | 25d | 0d | SIC- Cost [5379.14]; Excavator [12 h]; Excavator Operator [67.9 h] | 5,382.27 | Z A |
|  | 3 | **Install Manholes** |  | 2026-09-03 | 2026-11-07 |  |  |  |  |  |  |  |  |  |  |
| SDR-2-CON-TE-ZA-3250 |  | Installation of Telecom Manhole | 20d | 2026-09-03 A | 2026-11-07 | SDR-2-CON-TE-ZA-3240 FF, SDR-2-CON-TE-ZA-3290 FF | 60% | 5d | 2026-10-21 | 2026-11-12 | 25d | 0d | SIC- Cost; Electrical Forman [67.9 h]; Electrical Technician [67.9 h]; Electrical Helper [67.9 h] | 24,220.18 | Z A |
|  | 4 | **Testting** |  | 2026-11-08 | 2026-11-23 |  |  |  |  |  |  |  |  |  |  |
| SDR-2-CON-TE-ZA-3260 |  | Telecom Manhole finishing works | 14d | 2026-11-08 | 2026-11-23 | SDR-2-CON-TE-ZA-3250 |  |  |  |  | 25d | 0d | SIC- Cost; Electrical Forman [67.9 h]; Electrical Technician [67.9 h]; Electrical Helper [67.9 h] | 5,382.27 | Z A |
|  | 5 | **Backfilling** |  | 2026-12-06 | 2026-12-29 |  |  |  |  |  |  |  |  |  |  |
| SDR-2-CON-TE-ZA-3270 |  | Backfilling over Telecom Manhole | 21d | 2026-12-06 | 2026-12-29 | SDR-2-CON-TE-ZA-3260 FS+10d |  |  |  |  | 25d | 22d | SIC- Cost; Excavator [5 h]; Excavator Operator [67.9 h] | 10,764.52 | Z A |

| ID | WBS | Activity | Duration | Start | Finish | Predecessors | Complete | Remaining | Planned start | Planned finish | Total float | Free float | Resources | Cost | ZONE A |
| --- | --- | --- | --- | --- | --- | --- | --- | --- | --- | --- | --- | --- | --- | --- | --- |
|  | 11 | **TELECOMMUNICATION IN ( PH2-A-MCA0 )** |  | 2026-08-01 | 2027-02-25 |  |  |  |  |  |  |  |  |  |  |
|  | 3 | **Ducts** |  | 2026-08-01 | 2027-01-20 |  |  |  |  |  |  |  |  |  |  |
|  | 2 | **Excavation** |  | 2026-08-01 | 2026-11-01 |  |  |  |  |  |  |  |  |  |  |
| SDR-2-CON-TE-ZA-3300 |  | Excavation for telecom crossing ducts & trenches | 21d | 2026-08-01 A | 2026-11-01 | SDR-2-CON-SL-ZA-1000 FF, SDR-2-CON-TE-ZA-3210 FF | 60% | 1d | 2026-09-06 | 2026-09-30 | 3d | 0d | SIC- Cost; Excavator [12 h]; Excavator Operator [135.79 h] | 7,189.75 | Z A |
|  | 5 | **Pipe laying** |  | 2026-11-02 | 2026-11-23 |  |  |  |  |  |  |  |  |  |  |
| SDR-2-CON-TE-ZA-3310 |  | HDPE Pipes for Telecom Installation | 19d | 2026-11-02 | 2026-11-23 | SDR-2-CON-TE-ZA-3300 |  |  |  |  | 3d | 0d | SIC- Cost; Electrical Forman [67.9 h]; Electrical Technician [67.9 h]; Electrical Helper [67.9 h] | 14,379.51 | Z A |
|  | 6 | **Backfilling** |  | 2026-11-24 | 2026-12-16 |  |  |  |  |  |  |  |  |  |  |
| SDR-2-CON-TE-ZA-3320 |  | Backfilling over HDPE Telecom Pipes | 20d | 2026-11-24 | 2026-12-16 | SDR-2-CON-TE-ZA-3310 |  |  |  |  | 3d | 0d | SIC- Cost; Excavator [6 h]; Excavator Operator [6.03 h] | 7,189.75 | Z A |
|  | 7 | **Pulling Cable** |  | 2026-12-29 | 2027-01-20 |  |  |  |  |  |  |  |  |  |  |
| SDR-2-CON-TE-ZA-3370 |  | Pulling Cable | 20d | 2026-12-29 | 2027-01-20 | SDR-2-CON-MV-ZA-1100 FS+5d, SDR-2-CON-TE-ZA-3320 FS+10d |  |  |  |  | 3d | 0d | SIC- Cost; Electrical Forman [67.9 h]; Electrical Technician [67.9 h]; Electrical Helper [67.9 h] | 43,138.51 | Z A |
|  | 4 | **Manholes** |  | 2026-09-07 | 2027-02-25 |  |  |  |  |  |  |  |  |  |  |
|  | 1 | **Excavation** |  | 2026-09-07 | 2026-11-11 |  |  |  |  |  |  |  |  |  |  |
| SDR-2-CON-TE-ZA-3330 |  | Excavation for Telecom Manholes | 21d | 2026-09-07 A | 2026-11-11 | SDR-2-CON-TE-ZA-3300 FF | 70% | 9.19d | 2026-09-06 | 2026-09-30 | 11.81d | 0d | SIC- Cost; Loader Operator [67.9 h]; Labor [67.9 h]; Excavator [12 h]; Excavator Operator [67.9 h] | 8,073.39 | Z A |
|  | 2 | **Bedding Work** |  | 2026-10-14 | 2026-12-05 |  |  |  |  |  |  |  |  |  |  |
| SDR-2-CON-TE-ZA-3380 |  | Sand bedding for Telecom Manhole | 20d | 2026-10-14 A | 2026-12-05 | SDR-2-CON-TE-ZA-3330 | 25% | 20d | 2026-11-05 | 2026-11-29 | 11.81d | 0d | SIC- Cost; Excavator [14.5 h]; Excavator Operator [67.9 h] | 5,382.27 | Z A |
|  | 3 | **Install Manholes** |  | 2026-10-22 | 2026-12-28 |  |  |  |  |  |  |  |  |  |  |
| SDR-2-CON-TE-ZA-3340 |  | Installation of Telecom Manhole | 20d | 2026-10-22 A | 2026-12-28 | SDR-2-CON-TE-ZA-3330, SDR-2-CON-TE-ZA-3380 | 25% | 20d | 2026-11-29 | 2026-12-22 | 11.81d | 0d | SIC- Cost; Electrical Forman [67.9 h]; Electrical Technician [67.9 h]; Electrical Helper [67.9 h] | 24,220.18 | Z A |
|  | 4 | **Testting** |  | 2026-12-28 | 2027-01-20 |  |  |  |  |  |  |  |  |  |  |
| SDR-2-CON-TE-ZA-3350 |  | Telecom Manhole finishing works | 20d | 2026-12-28 | 2027-01-20 | SDR-2-CON-TE-ZA-3340 |  |  |  |  | 11.81d | 0d | SIC- Cost; Electrical Forman [67.9 h]; Electrical Technician [67.9 h]; Electrical Helper [67.9 h] | 5,382.27 | Z A |
|  | 5 | **Backfilling** |  | 2027-02-01 | 2027-02-25 |  |  |  |  |  |  |  |  |  |  |
| SDR-2-CON-TE-ZA-3360 |  | Backfilling over Telecom Manhole | 20d | 2027-02-01 | 2027-02-25 | SDR-2-CON-TE-ZA-3350 FS+10d |  |  |  |  | 11.81d | 7d | SIC- Cost; Excavator [6.92 h]; Excavator Operator [67.9 h] | 10,764.52 | Z A |
|  | 12 | **TELECOMMUNICATION IN ( PH2-A-MCB0 )** |  | 2026-08-08 | 2027-03-06 |  |  |  |  |  |  |  |  |  |  |
|  | 3 | **Ducts** |  | 2026-08-08 | 2027-01-24 |  |  |  |  |  |  |  |  |  |  |
|  | 2 | **Excavation** |  | 2026-08-08 | 2026-11-01 |  |  |  |  |  |  |  |  |  |  |
| SDR-2-CON-TE-ZA-3390 |  | Excavation for telecom crossing ducts & trenches | 21d | 2026-08-08 A | 2026-11-01 | SDR-2-CON-SL-ZA-1000 FF, SDR-2-CON-TE-ZA-3300 FF | 30% | 1d | 2026-09-12 | 2026-10-06 | 3d | 0d | SIC- Cost; Excavator [12 h]; Excavator Operator [67.9 h] | 7,189.75 | Z A |

| ID | WBS | Activity | Duration | Start | Finish | Predecessors | Complete | Remaining | Planned start | Planned finish | Total float | Free float | Resources | Cost | ZONE A |
| --- | --- | --- | --- | --- | --- | --- | --- | --- | --- | --- | --- | --- | --- | --- | --- |
|  | 5 | **Pipe laying** |  | 2026-11-02 | 2026-11-25 |  |  |  |  |  |  |  |  |  |  |
| SDR-2-CON-TE-ZA-3400 |  | HDPE Pipes for Telecom Installation | 21d | 2026-11-02 | 2026-11-25 | SDR-2-CON-TE-ZA-3390 |  |  |  |  | 3d | 0d | SIC- Cost; Electrical Forman [67.9 h]; Electrical Technician [203.69 h]; Electrical Helper [67.9 h] | 14,379.51 | Z A |
|  | 6 | **Backfilling** |  | 2026-11-26 | 2026-12-19 |  |  |  |  |  |  |  |  |  |  |
| SDR-2-CON-TE-ZA-3410 |  | Backfilling over HDPE Telecom Pipes | 20d | 2026-11-26 | 2026-12-19 | SDR-2-CON-TE-ZA-3400 |  |  |  |  | 3d | 0d | SIC- Cost; Excavator [6 h]; Excavator Operator [6.03 h] | 7,189.75 | Z A |
|  | 7 | **Pulling Cable** |  | 2026-12-31 | 2027-01-24 |  |  |  |  |  |  |  |  |  |  |
| SDR-2-CON-TE-ZA-3460 |  | Pulling Cable | 21d | 2026-12-31 | 2027-01-24 | SDR-2-CON-TE-ZA-3410 FS+10d |  |  |  |  | 3d | 0d | SIC- Cost; Electrical Forman [67.9 h]; Electrical Technician [67.9 h]; Electrical Helper [67.9 h] | 43,138.51 | Z A |
|  | 4 | **Manholes** |  | 2026-09-13 | 2027-03-06 |  |  |  |  |  |  |  |  |  |  |
|  | 1 | **Excavation** |  | 2026-09-13 | 2026-11-17 |  |  |  |  |  |  |  |  |  |  |
| SDR-2-CON-TE-ZA-3420 |  | Excavation for Telecom Manholes | 21d | 2026-09-13 A | 2026-11-17 | SDR-2-CON-TE-ZA-3390 FF | 75% | 14.19d | 2026-09-12 | 2026-10-06 | 4.81d | 0d | SIC- Cost; Excavator [12 h]; Excavator Operator [67.9 h] | 8,073.39 | Z A |
|  | 2 | **Bedding Work** |  | 2026-10-21 | 2026-12-10 |  |  |  |  |  |  |  |  |  |  |
| SDR-2-CON-TE-ZA-3470 |  | Sand bedding for Telecom Manhole | 20d | 2026-10-21 A | 2026-12-10 | SDR-2-CON-TE-ZA-3420 | 50% | 20d | 2026-11-11 | 2026-12-05 | 4.81d | 0d | SIC- Cost; Excavator [12 h]; Excavator Operator [95.54 h] | 5,382.27 | Z A |
|  | 3 | **Install Manholes** |  | 2026-10-22 | 2027-01-03 |  |  |  |  |  |  |  |  |  |  |
| SDR-2-CON-TE-ZA-3430 |  | Installation of Telecom Manhole | 20d | 2026-10-22 A | 2027-01-03 | SDR-2-CON-TE-ZA-3420, SDR-2-CON-TE-ZA-3470 | 50% | 20d | 2026-12-05 | 2026-12-28 | 4.81d | 0d | SIC- Cost; Electrical Forman [67.9 h]; Electrical Technician [67.9 h]; Electrical Helper [67.9 h] | 24,220.18 | Z A |
|  | 4 | **Testting** |  | 2027-01-03 | 2027-01-27 |  |  |  |  |  |  |  |  |  |  |
| SDR-2-CON-TE-ZA-3440 |  | Telecom Manhole finishing works | 21d | 2027-01-03 | 2027-01-27 | SDR-2-CON-TE-ZA-3430 |  |  |  |  | 4.81d | 0d | SIC- Cost; Electrical Forman [67.9 h]; Electrical Technician [67.9 h]; Electrical Helper [67.9 h] | 5,382.27 | Z A |
|  | 5 | **Backfilling** |  | 2027-02-08 | 2027-03-06 |  |  |  |  |  |  |  |  |  |  |
| SDR-2-CON-TE-ZA-3450 |  | Backfilling over Telecom Manhole | 21d | 2027-02-08 | 2027-03-06 | SDR-2-CON-TE-ZA-4350, SDR-2-CON-TE-ZA-4360, SDR-2-CON-TE-ZA-4260, SDR-2-CON-TE-ZA-4270, SDR-2-CON-MV-ZA-1340, SDR-2-CON-TE-ZA-3440 FS+10d |  |  |  |  | 4.81d | 0d | SIC- Cost; Electrical Forman [67.9 h]; Electrical Technician [67.9 h]; Electrical Helper [67.9 h]; Excavator [12 h]; Excavator Operator [67.9 h] | 10,764.52 | Z A |
|  | 13 | **TELECOMMUNICATION IN ( PH2-A-MCC0 )** |  | 2026-07-20 | 2027-01-14 |  |  |  |  |  |  |  |  |  |  |
|  | 3 | **Ducts** |  | 2026-07-20 | 2027-01-04 |  |  |  |  |  |  |  |  |  |  |
|  | 2 | **Excavation** |  | 2026-07-20 | 2026-11-01 |  |  |  |  |  |  |  |  |  |  |
| SDR-2-CON-TE-ZA-3480 |  | Excavation for telecom crossing ducts & trenches | 21d | 2026-07-20 A | 2026-11-01 | SDR-2-CON-SL-ZA-1000 FF, SDR-2-CON-TE-ZA-3390 FF | 75% | 1d | 2026-09-17 | 2026-10-12 | 20d | 0d | SIC- Cost; Electrical Forman [135.79 h]; Electrical Technician [135.79 h]; Electrical Helper [135.79 h]; Excavator [16 h]; Excavator Operator [135.79 h] | 7,189.75 | Z A |
|  | 5 | **Pipe laying** |  | 2026-09-03 | 2026-11-05 |  |  |  |  |  |  |  |  |  |  |
| SDR-2-CON-TE-ZA-3490 |  | HDPE Pipes for Telecom Installation | 20d | 2026-09-03 A | 2026-11-05 | SDR-2-CON-TE-ZA-3480 FF | 25% | 5d | 2026-10-13 | 2026-11-04 | 20d | 0d | SIC- Cost; Electrical Forman [67.9 h]; Electrical Technician [67.9 h]; Electrical Helper [67.9 h] | 14,379.51 | Z A |
|  | 6 | **Backfilling** |  | 2026-11-07 | 2026-11-29 |  |  |  |  |  |  |  |  |  |  |
| SDR-2-CON-TE-ZA-3500 |  | Backfilling over HDPE Telecom Pipes | 20d | 2026-11-07 | 2026-11-29 | SDR-2-CON-TE-ZA-3490 |  |  |  |  | 20d | 0d | SIC- Cost; Electrical Forman [67.9 h]; Electrical Technician [67.9 h]; Electrical Helper [67.9 h]; Excavator [6 h]; Excavator Operator [67.9 h] | 7,189.75 | Z A |

| ID | WBS | Activity | Duration | Start | Finish | Predecessors | Complete | Remaining | Planned start | Planned finish | Total float | Free float | Resources | Cost | ZONE A |
| --- | --- | --- | --- | --- | --- | --- | --- | --- | --- | --- | --- | --- | --- | --- | --- |
|  | 7 | **Pulling Cable** |  | 2026-12-12 | 2027-01-04 |  |  |  |  |  |  |  |  |  |  |
| SDR-2-CON-TE-ZA-3550 |  | Pulling Cable | 21d | 2026-12-12 | 2027-01-04 | SDR-2-CON-TE-ZA-3500 FS+10d |  |  |  |  | 20d | 17d | SIC- Cost; Electrical Forman [67.9 h]; Electrical Technician [135.79 h]; Electrical Helper [67.9 h] | 43,138.51 | Z A |
|  | 4 | **Manholes** |  | 2026-09-10 | 2027-01-14 |  |  |  |  |  |  |  |  |  |  |
|  | 1 | **Excavation** |  | 2026-09-10 | 2026-10-01 |  |  |  |  |  |  |  |  |  |  |
| SDR-2-CON-TE-ZA-3510 |  | Excavation for Telecom Manholes | 21d | 2026-09-10 A | 2026-10-01 A | SDR-2-CON-TE-ZA-3480 FF | 100% |  | 2026-09-17 | 2026-10-12 |  |  | SIC- Cost; Electrical Forman [67.9 h]; Electrical Technician [67.9 h]; Electrical Helper [67.9 h]; Excavator [12 h]; Excavator Operator [67.9 h] | 8,073.39 | Z A |
|  | 2 | **Bedding Work** |  | 2026-09-10 | 2026-11-14 |  |  |  |  |  |  |  |  |  |  |
| SDR-2-CON-TE-ZA-3560 |  | Sand bedding for Telecom Manhole | 20d | 2026-09-10 A | 2026-11-14 | SDR-2-CON-TE-ZA-3510 FF | 50% | 11.19d | 2026-10-13 | 2026-11-04 | 11.81d | 0d | SIC- Cost; Electrical Forman [67.9 h]; Electrical Technician [67.9 h]; Electrical Helper [67.9 h]; Excavator [12 h]; Excavator Operator [67.9 h] | 5,382.27 | Z A |
|  | 3 | **Install Manholes** |  | 2026-10-01 | 2026-12-06 |  |  |  |  |  |  |  |  |  |  |
| SDR-2-CON-TE-ZA-3520 |  | Installation of Telecom Manhole | 19d | 2026-10-01 A | 2026-12-06 | SDR-2-CON-TE-ZA-3510, SDR-2-CON-TE-ZA-3560 | 50% | 19d | 2026-10-18 | 2026-11-09 | 11.81d | 0d | SIC- Cost; Electrical Forman [67.9 h]; Electrical Technician [67.9 h]; Electrical Helper [67.9 h] | 24,220.18 | Z A |
|  | 4 | **Testting** |  | 2026-12-06 | 2026-12-22 |  |  |  |  |  |  |  |  |  |  |
| SDR-2-CON-TE-ZA-3530 |  | Telecom Manhole finishing works | 14d | 2026-12-06 | 2026-12-22 | SDR-2-CON-TE-ZA-3520 |  |  |  |  | 11.81d | 0d | SIC- Cost; Electrical Forman [67.9 h]; Electrical Technician [67.9 h]; Electrical Helper [67.9 h] | 5,382.27 | Z A |
|  | 5 | **Backfilling** |  | 2026-12-22 | 2027-01-14 |  |  |  |  |  |  |  |  |  |  |
| SDR-2-CON-TE-ZA-3540 |  | Backfilling over Telecom Manhole | 20d | 2026-12-22 | 2027-01-14 | SDR-2-CON-TE-ZA-3530 |  |  |  |  | 11.81d | 8.81d | SIC- Cost; Electrical Forman [67.9 h]; Electrical Technician [67.9 h]; Electrical Helper [67.9 h]; Excavator [5 h]; Excavator Operator [67.9 h] | 10,764.52 | Z A |
|  | 14 | **TELECOMMUNICATION IN ( PH2-A-MCD0 )** |  | 2026-07-20 | 2027-01-25 |  |  |  |  |  |  |  |  |  |  |
|  | 3 | **Ducts** |  | 2026-07-20 | 2026-12-21 |  |  |  |  |  |  |  |  |  |  |
|  | 2 | **Excavation** |  | 2026-07-20 | 2026-11-01 |  |  |  |  |  |  |  |  |  |  |
| SDR-2-CON-TE-ZA-3570 |  | Excavation for telecom crossing ducts & trenches | 21d | 2026-07-20 A | 2026-11-01 | SDR-2-CON-SL-ZA-1000 FF, SDR-2-CON-TE-ZA-3480 FF | 75% | 1d | 2026-09-24 | 2026-10-18 | 20d | 0d | SIC- Cost; Electrical Forman [67.9 h]; Electrical Technician [67.9 h]; Electrical Helper [67.9 h]; Excavator [12 h]; Excavator Operator [67.9 h] | 7,189.75 | Z A |
|  | 5 | **Pipe laying** |  | 2026-09-03 | 2026-11-05 |  |  |  |  |  |  |  |  |  |  |
| SDR-2-CON-TE-ZA-3580 |  | HDPE Pipes for Telecom Installation | 20d | 2026-09-03 A | 2026-11-05 | SDR-2-CON-TE-ZA-3570 FF | 25% | 5d | 2026-10-19 | 2026-11-10 | 108d | 0d | SIC- Cost; Electrical Forman [67.9 h]; Electrical Technician [67.9 h]; Electrical Helper [67.9 h] | 14,379.51 | Z A |
|  | 6 | **Backfilling** |  | 2026-11-07 | 2026-11-26 |  |  |  |  |  |  |  |  |  |  |
| SDR-2-CON-TE-ZA-3590 |  | Backfilling over HDPE Telecom Pipes | 18d | 2026-11-07 | 2026-11-26 | SDR-2-CON-TE-ZA-3580 |  |  |  |  | 108d | 0d | SIC- Cost; Electrical Forman [67.9 h]; Electrical Technician [67.9 h]; Electrical Helper [67.9 h]; Excavator [6 h]; Excavator Operator [67.9 h] | 7,189.75 | Z A |
|  | 7 | **Pulling Cable** |  | 2026-11-28 | 2026-12-21 |  |  |  |  |  |  |  |  |  |  |
| SDR-2-CON-TE-ZA-3640 |  | Pulling Cable | 21d | 2026-11-28 | 2026-12-21 | SDR-2-CON-TE-ZA-3590 |  |  |  |  | 108d | 103d | SIC- Cost; Electrical Forman [67.9 h]; Electrical Technician [67.9 h]; Electrical Helper [67.9 h] | 43,138.51 | Z A |
|  | 4 | **Manholes** |  | 2026-09-10 | 2027-01-25 |  |  |  |  |  |  |  |  |  |  |
|  | 1 | **Excavation** |  | 2026-09-10 | 2026-10-01 |  |  |  |  |  |  |  |  |  |  |
| SDR-2-CON-TE-ZA-3600 |  | Excavation for Telecom Manholes | 21d | 2026-09-10 A | 2026-10-01 A | SDR-2-CON-TE-ZA-3570 FF | 100% |  | 2026-09-24 | 2026-10-18 |  |  | SIC- Cost; Electrical Forman [62.1 h]; Electrical Technician [62.1 h]; Electrical Helper [62.1 h]; Excavator [12 h]; Excavator Operator [67.9 h] | 8,073.39 | Z A |

| ID | WBS | Activity | Duration | Start | Finish | Predecessors | Complete | Remaining | Planned start | Planned finish | Total float | Free float | Resources | Cost | ZONE A |
| --- | --- | --- | --- | --- | --- | --- | --- | --- | --- | --- | --- | --- | --- | --- | --- |
|  | 2 | **Bedding Work** |  | 2026-09-15 | 2026-11-18 |  |  |  |  |  |  |  |  |  |  |
| SDR-2-CON-TE-ZA-3650 |  | Sand bedding for Telecom Manhole | 20d | 2026-09-15 A | 2026-11-18 | SDR-2-CON-TE-ZA-3600 FF | 50% | 15.19d | 2026-10-19 | 2026-11-10 | 25.81d | 0d | SIC- Cost [5379.14]; Electrical Forman [47.77 h]; Electrical Technician [47.77 h]; Electrical Helper [47.77 h]; Excavator [14.5 h]; Excavator Operator [95.54 h] | 5,382.27 | Z A |
|  | 3 | **Install Manholes** |  | 2026-10-01 | 2026-12-13 |  |  |  |  |  |  |  |  |  |  |
| SDR-2-CON-TE-ZA-3610 |  | Installation of Telecom Manhole | 21d | 2026-10-01 A | 2026-12-13 | SDR-2-CON-TE-ZA-3600, SDR-2-CON-TE-ZA-3650 | 50% | 21d | 2026-10-22 | 2026-11-16 | 25.81d | 4.81d | SIC- Cost; Electrical Forman [67.9 h]; Electrical Technician [67.9 h]; Electrical Helper [67.9 h] | 24,220.18 | Z A |
|  | 4 | **Testting** |  | 2026-12-19 | 2026-12-31 |  |  |  |  |  |  |  |  |  |  |
| SDR-2-CON-TE-ZA-3620 |  | Telecom Manhole finishing works | 12d | 2026-12-19 | 2026-12-31 | SDR-2-CON-CC-ZG-1610, SDR-2-CON-TE-ZA-3610 |  |  |  |  | 21d | 0d | SIC- Cost; Electrical Forman [66.88 h]; Electrical Technician [66.88 h]; Electrical Helper [67.9 h] | 5,382.27 | Z A |
|  | 5 | **Backfilling** |  | 2027-01-02 | 2027-01-25 |  |  |  |  |  |  |  |  |  |  |
| SDR-2-CON-TE-ZA-3630 |  | Backfilling over Telecom Manhole | 21d | 2027-01-02 | 2027-01-25 | SDR-2-CON-TE-ZA-4540, SDR-2-CON-TE-ZA-3620 |  |  |  |  | 21d | 14d | SIC- Cost; Electrical Forman [47.77 h]; Electrical Technician [47.77 h]; Electrical Helper [47.77 h]; Excavator [6.4 h]; Excavator Operator [67.9 h] | 10,764.52 | Z A |
|  | 5 | **TELECOMMUNICATION IN ( PH2-A-MCE0 )** |  | 2026-07-14 | 2027-02-16 |  |  |  |  |  |  |  |  |  |  |
|  | 3 | **Ducts** |  | 2026-07-14 | 2026-12-20 |  |  |  |  |  |  |  |  |  |  |
|  | 2 | **Excavation** |  | 2026-07-14 | 2026-11-01 |  |  |  |  |  |  |  |  |  |  |
| SDR-2-CON-TE-ZA-3660 |  | Excavation for telecom crossing ducts & trenches | 21d | 2026-07-14 A | 2026-11-01 | SDR-2-CON-SL-ZA-1000 FF, SDR-2-CON-TE-ZA-3570 FF | 75% | 1d | 2026-09-29 | 2026-10-22 | 20d | 0d | SIC- Cost; Electrical Forman [124.2 h]; Electrical Technician [124.2 h]; Electrical Helper [124.2 h]; Excavator [12 h]; Excavator Operator [135.79 h] | 7,189.75 | Z A |
|  | 5 | **Pipe laying** |  | 2026-07-21 | 2026-11-01 |  |  |  |  |  |  |  |  |  |  |
| SDR-2-CON-TE-ZA-3670 |  | HDPE Pipes for Telecom Installation | 17d | 2026-07-21 A | 2026-11-01 | SDR-2-CON-TE-ZA-3660 FF | 25% | 1d | 2026-10-24 | 2026-11-11 | 109d | 0d | SIC- Cost; Electrical Forman [67.9 h]; Electrical Technician [67.9 h]; Electrical Helper [67.9 h] | 14,379.51 | Z A |
|  | 6 | **Backfilling** |  | 2026-11-02 | 2026-11-25 |  |  |  |  |  |  |  |  |  |  |
| SDR-2-CON-TE-ZA-3680 |  | Backfilling over HDPE Telecom Pipes | 21d | 2026-11-02 | 2026-11-25 | SDR-2-CON-TE-ZA-3670 |  |  |  |  | 109d | 0d | SIC- Cost; Electrical Forman [60.34 h]; Electrical Technician [60.34 h]; Electrical Helper [60.34 h]; Excavator [6 h]; Excavator Operator [6.03 h] | 7,189.75 | Z A |
|  | 7 | **Pulling Cable** |  | 2026-11-26 | 2026-12-20 |  |  |  |  |  |  |  |  |  |  |
| SDR-2-CON-TE-ZA-3730 |  | Pulling Cable | 21d | 2026-11-26 | 2026-12-20 | SDR-2-CON-TE-ZA-3680 |  |  |  |  | 109d | 104d | SIC- Cost; Electrical Forman [67.9 h]; Electrical Technician [67.9 h]; Electrical Helper [67.9 h] | 43,138.51 | Z A |
|  | 4 | **Manholes** |  | 2026-10-19 | 2027-02-16 |  |  |  |  |  |  |  |  |  |  |
|  | 1 | **Excavation** |  | 2026-10-19 | 2026-11-24 |  |  |  |  |  |  |  |  |  |  |
| SDR-2-CON-TE-ZA-3690 |  | Excavation for Telecom Manholes | 21d | 2026-10-19 A | 2026-11-24 | SDR-2-CON-TE-ZA-3660 SS | 25% | 21d | 2026-10-26 | 2026-11-18 | 21d | 0d | SIC- Cost [5379.14]; Electrical Forman [62.1 h]; Electrical Technician [62.1 h]; Electrical Helper [62.1 h]; Excavator [12 h]; Excavator Operator [124.2 h] | 8,073.39 | Z A |
|  | 2 | **Bedding Work** |  | 2026-10-22 | 2026-12-17 |  |  |  |  |  |  |  |  |  |  |
| SDR-2-CON-TE-ZA-3740 |  | Sand bedding for Telecom Manhole | 20d | 2026-10-22 A | 2026-12-17 | SDR-2-CON-TE-ZA-3690 | 20% | 20d | 2026-11-19 | 2026-12-12 | 21d | 0d | SIC- Cost [5379.14]; Electrical Forman [95.54 h]; Electrical Technician [95.54 h]; Electrical Helper [95.54 h]; Excavator [6 h]; Excavator Operator [95.54 h] | 5,382.27 | Z A |
|  | 3 | **Install Manholes** |  | 2026-12-19 | 2027-01-10 |  |  |  |  |  |  |  |  |  |  |
| SDR-2-CON-TE-ZA-3700 |  | Installation of Telecom Manhole | 20d | 2026-12-19 | 2027-01-10 | SDR-2-CON-TE-ZA-3690, SDR-2-CON-TE-ZA-3740 |  |  |  |  | 21d | 0d | SIC- Cost; Electrical Forman [67.9 h]; Electrical Technician [67.9 h]; Electrical Helper [67.9 h] | 24,220.18 | Z A |

| ID | WBS | Activity | Duration | Start | Finish | Predecessors | Complete | Remaining | Planned start | Planned finish | Total float | Free float | Resources | Cost | ZONE A |
| --- | --- | --- | --- | --- | --- | --- | --- | --- | --- | --- | --- | --- | --- | --- | --- |
|  | 4 | **Testting** |  | 2027-01-11 | 2027-01-24 |  |  |  |  |  |  |  |  |  |  |
| SDR-2-CON-TE-ZA-3710 |  | Telecom Manhole finishing works | 12d | 2027-01-11 | 2027-01-24 | SDR-2-CON-TE-ZA-3700 |  |  |  |  | 21d | 0d | SIC- Cost; Electrical Forman [66.88 h]; Electrical Technician [66.88 h]; Electrical Helper [67.9 h] | 5,382.27 | Z A |
|  | 5 | **Backfilling** |  | 2027-01-25 | 2027-02-16 |  |  |  |  |  |  |  |  |  |  |
| SDR-2-CON-TE-ZA-3720 |  | Backfilling over Telecom Manhole | 20d | 2027-01-25 | 2027-02-16 | SDR-2-CON-TE-ZA-3710 |  |  |  |  | 21d | 1d | SIC- Cost; Electrical Forman [47.77 h]; Electrical Technician [47.77 h]; Electrical Helper [47.77 h]; Excavator [12 h]; Excavator Operator [95.54 h] | 10,764.52 | Z A |
|  | 6 | **TELECOMMUNICATION IN ( PH2-A-MCF0 )** |  | 2026-07-14 | 2027-02-17 |  |  |  |  |  |  |  |  |  |  |
|  | 3 | **Ducts** |  | 2026-07-14 | 2026-12-19 |  |  |  |  |  |  |  |  |  |  |
|  | 2 | **Excavation** |  | 2026-07-14 | 2026-11-01 |  |  |  |  |  |  |  |  |  |  |
| SDR-2-CON-TE-ZA-3750 |  | Excavation for telecom crossing ducts & trenches | 21d | 2026-07-14 A | 2026-11-01 | SDR-2-CON-SL-ZA-1000 FF, SDR-2-CON-TE-ZA-3660 FF | 75% | 1d | 2026-10-03 | 2026-10-26 | 20d | 0d | SIC- Cost; Electrical Forman [124.2 h]; Electrical Technician [124.2 h]; Electrical Helper [124.2 h]; Excavator [12 h]; Excavator Operator [135.79 h] | 7,189.75 | Z A |
|  | 5 | **Pipe laying** |  | 2026-07-21 | 2026-11-01 |  |  |  |  |  |  |  |  |  |  |
| SDR-2-CON-TE-ZA-3760 |  | HDPE Pipes for Telecom Installation | 20d | 2026-07-21 A | 2026-11-01 | SDR-2-CON-TE-ZA-3750 FF | 25% | 1d | 2026-10-27 | 2026-11-18 | 72d | 0d | SIC- Cost; Electrical Forman [135.79 h]; Electrical Technician [135.79 h]; Electrical Helper [135.79 h] | 14,379.51 | Z A |
|  | 6 | **Backfilling** |  | 2026-11-02 | 2026-11-25 |  |  |  |  |  |  |  |  |  |  |
| SDR-2-CON-TE-ZA-3770 |  | Backfilling over HDPE Telecom Pipes | 21d | 2026-11-02 | 2026-11-25 | SDR-2-CON-TE-ZA-3760 |  |  |  |  | 72d | 0d | SIC- Cost; Electrical Forman [135.79 h]; Electrical Technician [135.79 h]; Electrical Helper [135.79 h]; Excavator [6 h]; Excavator Operator [135.79 h] | 7,189.75 | Z A |
|  | 7 | **Pulling Cable** |  | 2026-11-26 | 2026-12-19 |  |  |  |  |  |  |  |  |  |  |
| SDR-2-CON-TE-ZA-3820 |  | Pulling Cable | 20d | 2026-11-26 | 2026-12-19 | SDR-2-CON-TE-ZA-3770 |  |  |  |  | 72d | 52d | SIC- Cost; Electrical Forman [135.79 h]; Electrical Technician [135.79 h]; Electrical Helper [135.79 h] | 43,138.51 | Z A |
|  | 4 | **Manholes** |  | 2026-10-20 | 2027-02-17 |  |  |  |  |  |  |  |  |  |  |
|  | 1 | **Excavation** |  | 2026-10-20 | 2026-11-24 |  |  |  |  |  |  |  |  |  |  |
| SDR-2-CON-TE-ZA-3780 |  | Excavation for Telecom Manholes | 21d | 2026-10-20 A | 2026-11-24 | SDR-2-CON-TE-ZA-3750 SS | 25% | 21d | 2026-10-26 | 2026-11-18 | 20d | 0d | SIC- Cost; Electrical Forman [135.79 h]; Electrical Technician [135.79 h]; Electrical Helper [135.79 h] | 8,073.39 | Z A |
|  | 2 | **Bedding Work** |  | 2026-10-22 | 2026-12-17 |  |  |  |  |  |  |  |  |  |  |
| SDR-2-CON-TE-ZA-3830 |  | Sand bedding for Telecom Manhole | 20d | 2026-10-22 A | 2026-12-17 | SDR-2-CON-TE-ZA-3780 | 20% | 20d | 2026-11-19 | 2026-12-12 | 20d | 0d | SIC- Cost; Electrical Forman [135.79 h]; Electrical Technician [135.79 h]; Electrical Helper [135.79 h] | 5,382.27 | Z A |
|  | 3 | **Install Manholes** |  | 2026-10-24 | 2027-01-10 |  |  |  |  |  |  |  |  |  |  |
| SDR-2-CON-TE-ZA-3790 |  | Installation of Telecom Manhole | 20d | 2026-10-24 A | 2027-01-10 | SDR-2-CON-TE-ZA-3780, SDR-2-CON-TE-ZA-3830 | 20% | 20d | 2026-12-13 | 2027-01-04 | 20d | 0d | SIC- Cost; Electrical Forman [67.9 h]; Electrical Technician [67.9 h]; Electrical Helper [67.9 h] | 24,220.18 | Z A |
|  | 4 | **Testting** |  | 2027-01-11 | 2027-01-24 |  |  |  |  |  |  |  |  |  |  |
| SDR-2-CON-TE-ZA-3800 |  | Telecom Manhole finishing works | 12d | 2027-01-11 | 2027-01-24 | SDR-2-CON-TE-ZA-3790 |  |  |  |  | 20d | 0d | SIC- Cost; Electrical Forman [66.88 h]; Electrical Technician [66.88 h]; Electrical Helper [66.88 h] | 5,382.27 | Z A |
|  | 5 | **Backfilling** |  | 2027-01-25 | 2027-02-17 |  |  |  |  |  |  |  |  |  |  |
| SDR-2-CON-TE-ZA-3810 |  | Backfilling over Telecom Manhole | 21d | 2027-01-25 | 2027-02-17 | SDR-2-CON-TE-ZA-3800 |  |  |  |  | 20d | 0d | SIC- Cost; Electrical Forman [67.9 h]; Electrical Technician [67.9 h]; Electrical Helper [67.9 h]; Excavator [12 h]; Excavator Operator [67.9 h] | 10,764.52 | Z A |

| ID | WBS | Activity | Duration | Start | Finish | Predecessors | Complete | Remaining | Planned start | Planned finish | Total float | Free float | Resources | Cost | ZONE A |
| --- | --- | --- | --- | --- | --- | --- | --- | --- | --- | --- | --- | --- | --- | --- | --- |
|  | 7 | **TELECOMMUNICATION IN ( PH2-A-MCG0 )** |  | 2026-07-14 | 2027-02-16 |  |  |  |  |  |  |  |  |  |  |
|  | 3 | **Ducts** |  | 2026-07-14 | 2026-12-29 |  |  |  |  |  |  |  |  |  |  |
|  | 2 | **Excavation** |  | 2026-07-14 | 2026-11-01 |  |  |  |  |  |  |  |  |  |  |
| SDR-2-CON-TE-ZA-3840 |  | Excavation for telecom crossing ducts & trenches | 21d | 2026-07-14 A | 2026-11-01 | SDR-2-CON-SL-ZA-1000 FF, SDR-2-CON-TE-ZA-3750 FF | 75% | 1d | 2026-10-06 | 2026-10-29 | 21d | 0d | SIC- Cost; Electrical Forman [135.79 h]; Electrical Technician [135.79 h]; Electrical Helper [135.79 h]; Excavator [12.01 h]; Excavator Operator [135.79 h] | 7,189.75 | Z A |
|  | 5 | **Pipe laying** |  | 2026-07-21 | 2026-11-01 |  |  |  |  |  |  |  |  |  |  |
| SDR-2-CON-TE-ZA-3850 |  | HDPE Pipes for Telecom Installation | 20d | 2026-07-21 A | 2026-11-01 | SDR-2-CON-TE-ZA-3840 FF | 25% | 1d | 2026-10-31 | 2026-11-22 | 63d | 0d | SIC- Cost; Electrical Forman [67.9 h]; Electrical Technician [67.9 h]; Electrical Helper [67.9 h] | 14,379.51 | Z A |
|  | 6 | **Backfilling** |  | 2026-11-02 | 2026-11-24 |  |  |  |  |  |  |  |  |  |  |
| SDR-2-CON-TE-ZA-3860 |  | Backfilling over HDPE Telecom Pipes | 20d | 2026-11-02 | 2026-11-24 | SDR-2-CON-TE-ZA-3850 |  |  |  |  | 63d | 0d | SIC- Cost; Electrical Forman [40.23 h]; Electrical Technician [40.23 h]; Electrical Helper [40.23 h]; Excavator [6 h]; Excavator Operator [6.03 h] | 7,189.75 | Z A |
|  | 7 | **Pulling Cable** |  | 2026-12-06 | 2026-12-29 |  |  |  |  |  |  |  |  |  |  |
| SDR-2-CON-TE-ZA-3910 |  | Pulling Cable | 21d | 2026-12-06 | 2026-12-29 | SDR-2-CON-TE-ZA-3860 FS+9d |  |  |  |  | 63d | 43d | SIC- Cost; Electrical Forman [67.9 h]; Electrical Technician [67.9 h]; Electrical Helper [67.9 h] | 43,138.51 | Z A |
|  | 4 | **Manholes** |  | 2026-10-20 | 2027-02-16 |  |  |  |  |  |  |  |  |  |  |
|  | 1 | **Excavation** |  | 2026-10-20 | 2026-11-24 |  |  |  |  |  |  |  |  |  |  |
| SDR-2-CON-TE-ZA-3870 |  | Excavation for Telecom Manholes | 21d | 2026-10-20 A | 2026-11-24 | SDR-2-CON-TE-ZA-3840 SS | 25% | 21d | 2026-10-26 | 2026-11-18 | 21d | 0d | SIC- Cost; Electrical Forman [67.9 h]; Electrical Technician [67.9 h]; Electrical Helper [67.9 h]; Excavator [12 h]; Excavator Operator [124.2 h] | 8,073.39 | Z A |
|  | 2 | **Bedding Work** |  | 2026-10-24 | 2026-12-17 |  |  |  |  |  |  |  |  |  |  |
| SDR-2-CON-TE-ZA-3920 |  | Sand bedding for Telecom Manhole | 20d | 2026-10-24 A | 2026-12-17 | SDR-2-CON-TE-ZA-3870 | 15% | 20d | 2026-11-19 | 2026-12-12 | 21d | 0d | SIC- Cost; Electrical Forman [67.9 h]; Electrical Technician [67.9 h]; Electrical Helper [67.9 h] | 5,382.27 | Z A |
|  | 3 | **Install Manholes** |  | 2026-10-24 | 2027-01-10 |  |  |  |  |  |  |  |  |  |  |
| SDR-2-CON-TE-ZA-3880 |  | Installation of Telecom Manhole | 20d | 2026-10-24 A | 2027-01-10 | SDR-2-CON-TE-ZA-3870, SDR-2-CON-TE-ZA-3920 | 15% | 20d | 2026-12-13 | 2027-01-04 | 21d | 0d | SIC- Cost; Electrical Forman [67.9 h]; Electrical Technician [67.9 h]; Electrical Helper [67.9 h] | 24,220.18 | Z A |
|  | 4 | **Testting** |  | 2027-01-11 | 2027-01-24 |  |  |  |  |  |  |  |  |  |  |
| SDR-2-CON-TE-ZA-3890 |  | Telecom Manhole finishing works | 12d | 2027-01-11 | 2027-01-24 | SDR-2-CON-TE-ZA-3880 |  |  |  |  | 21d | 0d | SIC- Cost; Electrical Forman [66.88 h]; Electrical Technician [66.88 h]; Electrical Helper [66.88 h] | 5,382.27 | Z A |
|  | 5 | **Backfilling** |  | 2027-01-25 | 2027-02-16 |  |  |  |  |  |  |  |  |  |  |
| SDR-2-CON-TE-ZA-3900 |  | Backfilling over Telecom Manhole | 20d | 2027-01-25 | 2027-02-16 | SDR-2-CON-TE-ZA-3890 |  |  |  |  | 21d | 1d | SIC- Cost; Electrical Forman [67.9 h]; Electrical Technician [67.9 h]; Electrical Helper [67.9 h]; Excavator [12 h]; Excavator Operator [67.9 h]; Dumper Operator [67.9 h]; Dumper Truck [50 h] | 10,764.52 | Z A |
|  | 8 | **TELECOMMUNICATION IN ( PH2-A-MCH0 )** |  | 2026-07-30 | 2027-02-14 |  |  |  |  |  |  |  |  |  |  |
|  | 3 | **Ducts** |  | 2026-07-30 | 2027-01-11 |  |  |  |  |  |  |  |  |  |  |
|  | 2 | **Excavation** |  | 2026-07-30 | 2026-11-01 |  |  |  |  |  |  |  |  |  |  |
| SDR-2-CON-TE-ZA-3930 |  | Excavation for telecom crossing ducts & trenches | 21d | 2026-07-30 A | 2026-11-01 | SDR-2-CON-SL-ZA-1000 FF, SDR-2-CON-TE-ZA-3840 FF | 80% | 1d | 2026-10-08 | 2026-11-01 | 23d | 0d | SIC- Cost; Electrical Forman [135.79 h]; Electrical Technician [135.79 h]; Electrical Helper [135.79 h] | 7,189.75 | Z A |

| ID | WBS | Activity | Duration | Start | Finish | Predecessors | Complete | Remaining | Planned start | Planned finish | Total float | Free float | Resources | Cost | ZONE A |
| --- | --- | --- | --- | --- | --- | --- | --- | --- | --- | --- | --- | --- | --- | --- | --- |
|  | 5 | **Pipe laying** |  | 2026-11-02 | 2026-11-24 |  |  |  |  |  |  |  |  |  |  |
| SDR-2-CON-TE-ZA-3940 |  | HDPE Pipes for Telecom Installation | 20d | 2026-11-02 | 2026-11-24 | SDR-2-CON-TE-ZA-3930 |  |  |  |  | 52d | 0d | SIC- Cost; Electrical Forman [67.9 h]; Electrical Technician [67.9 h]; Electrical Helper [67.9 h] | 14,379.51 | Z A |
|  | 6 | **Backfilling** |  | 2026-11-25 | 2026-12-17 |  |  |  |  |  |  |  |  |  |  |
| SDR-2-CON-TE-ZA-3950 |  | Backfilling over HDPE Telecom Pipes | 20d | 2026-11-25 | 2026-12-17 | SDR-2-CON-TE-ZA-3940 |  |  |  |  | 52d | 0d | SIC- Cost; Electrical Forman [40.23 h]; Electrical Technician [40.23 h]; Electrical Helper [40.23 h]; Excavator [6 h]; Excavator Operator [40.23 h] | 7,189.75 | Z A |
|  | 7 | **Pulling Cable** |  | 2026-12-19 | 2027-01-11 |  |  |  |  |  |  |  |  |  |  |
| SDR-2-CON-TE-ZA-4000 |  | Pulling Cable | 21d | 2026-12-19 | 2027-01-11 | SDR-2-CON-TE-ZA-3950 |  |  |  |  | 52d | 32d | SIC- Cost; Electrical Forman [67.9 h]; Electrical Technician [67.9 h]; Electrical Helper [67.9 h] | 43,138.51 | Z A |
|  | 4 | **Manholes** |  | 2026-10-20 | 2027-02-14 |  |  |  |  |  |  |  |  |  |  |
|  | 1 | **Excavation** |  | 2026-10-20 | 2026-11-24 |  |  |  |  |  |  |  |  |  |  |
| SDR-2-CON-TE-ZA-3960 |  | Excavation for Telecom Manholes | 21d | 2026-10-20 A | 2026-11-24 | SDR-2-CON-TE-ZA-3930 SS | 25% | 21d | 2026-10-26 | 2026-11-18 | 23d | 0d | SIC- Cost; Electrical Forman [67.9 h]; Electrical Technician [67.9 h]; Electrical Helper [67.9 h]; Excavator [12 h]; Excavator Operator [67.9 h] | 8,073.39 | Z A |
|  | 2 | **Bedding Work** |  | 2026-10-22 | 2026-12-17 |  |  |  |  |  |  |  |  |  |  |
| SDR-2-CON-TE-ZA-4010 |  | Sand bedding for Telecom Manhole | 20d | 2026-10-22 A | 2026-12-17 | SDR-2-CON-TE-ZA-3960 | 10% | 20d | 2026-11-19 | 2026-12-12 | 23d | 0d | SIC- Cost; Electrical Forman [67.9 h]; Electrical Technician [67.9 h]; Electrical Helper [67.9 h] | 5,382.27 | Z A |
|  | 3 | **Install Manholes** |  | 2026-10-24 | 2027-01-10 |  |  |  |  |  |  |  |  |  |  |
| SDR-2-CON-TE-ZA-3970 |  | Installation of Telecom Manhole | 20d | 2026-10-24 A | 2027-01-10 | SDR-2-CON-TE-ZA-3960, SDR-2-CON-TE-ZA-4010 | 10% | 20d | 2026-12-13 | 2027-01-04 | 23d | 0d | SIC- Cost; Electrical Forman [40.23 h]; Electrical Technician [40.23 h]; Electrical Helper [40.23 h] | 24,220.18 | Z A |
|  | 4 | **Testting** |  | 2027-01-11 | 2027-01-24 |  |  |  |  |  |  |  |  |  |  |
| SDR-2-CON-TE-ZA-3980 |  | Telecom Manhole finishing works | 12d | 2027-01-11 | 2027-01-24 | SDR-2-CON-TE-ZA-3970 |  |  |  |  | 23d | 0d | SIC- Cost; Electrical Forman [67.9 h]; Electrical Technician [67.9 h]; Electrical Helper [67.9 h] | 5,382.27 | Z A |
|  | 5 | **Backfilling** |  | 2027-01-25 | 2027-02-14 |  |  |  |  |  |  |  |  |  |  |
| SDR-2-CON-TE-ZA-3990 |  | Backfilling over Telecom Manhole | 18d | 2027-01-25 | 2027-02-14 | SDR-2-CON-TE-ZA-3980 |  |  |  |  | 23d | 3d | SIC- Cost; Electrical Forman [67.9 h]; Electrical Technician [67.9 h]; Electrical Helper [67.9 h]; Excavator [12 h]; Excavator Operator [67.9 h] | 10,764.52 | Z A |
|  | 9 | **TELECOMMUNICATION IN ( PH2-ART-MC00 )** |  | 2026-07-09 | 2027-01-20 |  |  |  |  |  |  |  |  |  |  |
|  | 3 | **Ducts** |  | 2026-07-09 | 2027-01-10 |  |  |  |  |  |  |  |  |  |  |
|  | 2 | **Excavation** |  | 2026-07-09 | 2026-11-01 |  |  |  |  |  |  |  |  |  |  |
| SDR-2-CON-TE-ZA-4020 |  | Excavation for telecom crossing ducts & trenches | 21d | 2026-07-09 A | 2026-11-01 | SDR-2-CON-SL-ZA-1000 FF, SDR-2-CON-TE-ZA-3930 FF | 70% | 1d | 2026-10-08 | 2026-11-01 | 44d | 0d | SIC- Cost; Electrical Forman [135.79 h]; Electrical Technician [135.79 h]; Electrical Helper [135.79 h]; Excavator [12 h]; Excavator Operator [135.79 h] | 7,189.75 | Z A |
|  | 5 | **Pipe laying** |  | 2026-11-02 | 2026-11-24 |  |  |  |  |  |  |  |  |  |  |
| SDR-2-CON-TE-ZA-4030 |  | HDPE Pipes for Telecom Installation | 20d | 2026-11-02 | 2026-11-24 | SDR-2-CON-TE-ZA-4020 |  |  |  |  | 53d | 0d | SIC- Cost; Electrical Forman [67.9 h]; Electrical Technician [67.9 h]; Electrical Helper [67.9 h] | 14,379.51 | Z A |
|  | 6 | **Backfilling** |  | 2026-11-25 | 2026-12-16 |  |  |  |  |  |  |  |  |  |  |
| SDR-2-CON-TE-ZA-4040 |  | Backfilling over HDPE Telecom Pipes | 19d | 2026-11-25 | 2026-12-16 | SDR-2-CON-TE-ZA-4030 |  |  |  |  | 53d | 0d | SIC- Cost; Electrical Forman [67.9 h]; Electrical Technician [67.9 h]; Electrical Helper [67.9 h]; Excavator [6 h]; Excavator Operator [67.9 h] | 7,189.75 | Z A |

| ID | WBS | Activity | Duration | Start | Finish | Predecessors | Complete | Remaining | Planned start | Planned finish | Total float | Free float | Resources | Cost | ZONE A |
| --- | --- | --- | --- | --- | --- | --- | --- | --- | --- | --- | --- | --- | --- | --- | --- |
|  | 7 | **Pulling Cable** |  | 2026-12-17 | 2027-01-10 |  |  |  |  |  |  |  |  |  |  |
| SDR-2-CON-TE-ZA-4090 |  | Pulling Cable | 21d | 2026-12-17 | 2027-01-10 | SDR-2-CON-TE-ZA-4040 |  |  |  |  | 53d | 33d | SIC- Cost; Electrical Forman [135.79 h]; Electrical Technician [135.79 h]; Electrical Helper [135.79 h] | 43,138.51 | Z A |
|  | 4 | **Manholes** |  | 2026-10-12 | 2027-01-20 |  |  |  |  |  |  |  |  |  |  |
|  | 1 | **Excavation** |  | 2026-10-12 | 2026-10-22 |  |  |  |  |  |  |  |  |  |  |
| SDR-2-CON-TE-ZA-4050 |  | Excavation for Telecom Manholes | 21d | 2026-10-12 A | 2026-10-22 A | SDR-2-CON-TE-ZA-4020 SS | 100% |  | 2026-10-26 | 2026-11-18 |  |  | SIC- Cost; Electrical Forman [135.79 h]; Electrical Technician [135.79 h]; Electrical Helper [135.79 h]; Excavator [12 h]; Excavator Operator [248.39 h] | 8,073.39 | Z A |
|  | 2 | **Bedding Work** |  | 2026-10-19 | 2026-11-23 |  |  |  |  |  |  |  |  |  |  |
| SDR-2-CON-TE-ZA-4100 |  | Sand bedding for Telecom Manhole | 20d | 2026-10-19 A | 2026-11-23 | SDR-2-CON-TE-ZA-4050 | 50% | 20d | 2026-10-26 | 2026-11-17 | 44d | 0d | SIC- Cost; Electrical Forman [135.79 h]; Electrical Technician [135.79 h]; Electrical Helper [135.79 h] | 5,382.27 | Z A |
|  | 3 | **Install Manholes** |  | 2026-10-22 | 2026-12-16 |  |  |  |  |  |  |  |  |  |  |
| SDR-2-CON-TE-ZA-4060 |  | Installation of Telecom Manhole | 20d | 2026-10-22 A | 2026-12-16 | SDR-2-CON-TE-ZA-4050, SDR-2-CON-TE-ZA-4100 | 50% | 20d | 2026-11-18 | 2026-12-10 | 44d | 0d | SIC- Cost; Electrical Forman [67.9 h]; Electrical Technician [60.34 h]; Electrical Helper [67.9 h] | 24,220.18 | Z A |
|  | 4 | **Testting** |  | 2026-12-17 | 2026-12-30 |  |  |  |  |  |  |  |  |  |  |
| SDR-2-CON-TE-ZA-4070 |  | Telecom Manhole finishing works | 12d | 2026-12-17 | 2026-12-30 | SDR-2-CON-TE-ZA-4060 |  |  |  |  | 44d | 0d | SIC- Cost; Electrical Forman [67.9 h]; Electrical Technician [67.9 h]; Electrical Helper [67.9 h] | 5,382.27 | Z A |
|  | 5 | **Backfilling** |  | 2026-12-31 | 2027-01-20 |  |  |  |  |  |  |  |  |  |  |
| SDR-2-CON-TE-ZA-4080 |  | Backfilling over Telecom Manhole | 18d | 2026-12-31 | 2027-01-20 | SDR-2-CON-TE-ZA-4070 |  |  |  |  | 44d | 24d | SIC- Cost; Electrical Forman [67.9 h]; Electrical Technician [67.9 h]; Electrical Helper [67.9 h]; Excavator [12 h]; Excavator Operator [67.9 h] | 10,764.52 | Z A |
|  | 10 | **TELECOMMUNICATION IN ( PH2-ART-MC10 )** |  | 2026-07-14 | 2026-12-24 |  |  |  |  |  |  |  |  |  |  |
|  | 3 | **Ducts** |  | 2026-07-14 | 2026-12-19 |  |  |  |  |  |  |  |  |  |  |
|  | 2 | **Excavation** |  | 2026-07-14 | 2026-11-01 |  |  |  |  |  |  |  |  |  |  |
| SDR-2-CON-TE-ZA-4110 |  | Excavation for telecom crossing ducts & trenches | 21d | 2026-07-14 A | 2026-11-01 | SDR-2-CON-SL-ZA-1000 FF, SDR-2-CON-TE-ZA-3930 FF | 75% | 1d | 2026-10-08 | 2026-11-01 | 72d | 0d | SIC- Cost; Electrical Forman [135.79 h]; Electrical Technician [135.79 h]; Electrical Helper [135.79 h]; Excavator [12 h]; Excavator Operator [135.79 h] | 7,189.75 | Z A |
|  | 5 | **Pipe laying** |  | 2026-07-21 | 2026-11-01 |  |  |  |  |  |  |  |  |  |  |
| SDR-2-CON-TE-ZA-4120 |  | HDPE Pipes for Telecom Installation | 20d | 2026-07-21 A | 2026-11-01 | SDR-2-CON-TE-ZA-4110 FF | 25% | 1d | 2026-11-02 | 2026-11-24 | 72d | 0d | SIC- Cost; Electrical Forman [67.9 h]; Electrical Technician [67.9 h]; Electrical Helper [67.9 h] | 14,379.51 | Z A |
|  | 6 | **Backfilling** |  | 2026-11-02 | 2026-11-24 |  |  |  |  |  |  |  |  |  |  |
| SDR-2-CON-TE-ZA-4130 |  | Backfilling over HDPE Telecom Pipes | 20d | 2026-11-02 | 2026-11-24 | SDR-2-CON-TE-ZA-4120 |  |  |  |  | 72d | 0d | SIC- Cost; Electrical Forman [80.46 h]; Electrical Technician [80.46 h]; Electrical Helper [80.46 h]; Excavator [6 h]; Excavator Operator [6.03 h] | 7,189.75 | Z A |
|  | 7 | **Pulling Cable** |  | 2026-11-25 | 2026-12-19 |  |  |  |  |  |  |  |  |  |  |
| SDR-2-CON-TE-ZA-4180 |  | Pulling Cable | 21d | 2026-11-25 | 2026-12-19 | SDR-2-CON-TE-ZA-4130 |  |  |  |  | 72d | 52d | SIC- Cost; Electrical Forman [67.9 h]; Electrical Technician [67.9 h]; Electrical Helper [67.9 h] | 43,138.51 | Z A |
|  | 4 | **Manholes** |  | 2026-09-12 | 2026-12-24 |  |  |  |  |  |  |  |  |  |  |
|  | 1 | **Excavation** |  | 2026-09-12 | 2026-09-30 |  |  |  |  |  |  |  |  |  |  |
| SDR-2-CON-TE-ZA-4140 |  | Excavation for Telecom Manholes | 21d | 2026-09-12 A | 2026-09-30 A | SDR-2-CON-TE-ZA-4110 FF | 100% |  | 2026-10-08 | 2026-11-01 |  |  | SIC- Cost; Electrical Forman [135.79 h]; Electrical Technician [135.79 h]; Electrical Helper [135.79 h] | 8,073.39 | Z A |

| ID | WBS | Activity | Duration | Start | Finish | Predecessors | Complete | Remaining | Planned start | Planned finish | Total float | Free float | Resources | Cost | ZONE A | ZONE G |
| --- | --- | --- | --- | --- | --- | --- | --- | --- | --- | --- | --- | --- | --- | --- | --- | --- |
|  | 2 | **Bedding Work** |  | 2026-09-16 | 2026-11-17 |  |  |  |  |  |  |  |  |  |  |  |
| SDR-2-CON-TE-ZA-4190 |  | Sand bedding for Telecom Manhole | 18d | 2026-09-16 A | 2026-11-17 | SDR-2-CON-TE-ZA-4140 FF | 60% | 14.54d | 2026-11-02 | 2026-11-22 | 67.46d | 0d | SIC- Cost; Electrical Forman [135.79 h]; Electrical Technician [135.79 h]; Electrical Helper [135.79 h] | 5,382.27 | Z A |  |
|  | 3 | **Install Manholes** |  | 2026-09-13 | 2026-11-17 |  |  |  |  |  |  |  |  |  |  |  |
| SDR-2-CON-TE-ZA-4150 |  | Installation of Telecom Manhole | 20d | 2026-09-13 A | 2026-11-17 | SDR-2-CON-TE-ZA-4140 FF, SDR-2-CON-TE-ZA-4190 FF | 60% | 13.54d | 2026-11-23 | 2026-12-15 | 67.46d | 0d | SIC- Cost; Electrical Forman [80.46 h]; Electrical Technician [80.46 h]; Electrical Helper [80.46 h] | 24,220.18 | Z A |  |
|  | 4 | **Testting** |  | 2026-11-17 | 2026-11-30 |  |  |  |  |  |  |  |  |  |  |  |
| SDR-2-CON-TE-ZA-4160 |  | Telecom Manhole finishing works | 11d | 2026-11-17 | 2026-11-30 | SDR-2-CON-TE-ZA-4150 |  |  |  |  | 67.46d | 0d | SIC- Cost; Electrical Forman [67.9 h]; Electrical Technician [67.9 h]; Electrical Helper [67.9 h] | 5,382.27 | Z A |  |
|  | 5 | **Backfilling** |  | 2026-11-30 | 2026-12-24 |  |  |  |  |  |  |  |  |  |  |  |
| SDR-2-CON-TE-ZA-4170 |  | Backfilling over Telecom Manhole | 21d | 2026-11-30 | 2026-12-24 | SDR-2-CON-TE-ZA-4160 |  |  |  |  | 67.46d | 47.46d | SIC- Cost; Electrical Forman [67.9 h]; Electrical Technician [67.9 h]; Electrical Helper [67.9 h]; Excavator [12 h]; Excavator Operator [67.9 h] | 10,764.52 | Z A |  |
|  | ZG | **ZONE G** |  | 2026-07-01 | 2027-03-28 |  |  |  |  |  |  |  |  |  |  |  |
|  | 1 | **Street Lighting Network** |  | 2026-07-01 | 2027-03-28 |  |  |  |  |  |  |  |  |  |  |  |
|  | 5 | **Street Lighting IN ( PH2-G-MCA0 )** |  | 2026-08-13 | 2026-12-27 |  |  |  |  |  |  |  |  |  |  |  |
|  | 10 | **Excavation** |  | 2026-08-13 | 2026-11-01 |  |  |  |  |  |  |  |  |  |  |  |
| SDR-2-CON-SL-ZA-3230 |  | Excavation for LV Cable drawpits & trenches | 21d | 2026-08-13 A | 2026-11-01 | SDR-2-CON-SL-ZA-3590 FF, SDR-2-CON-SL-ZA-1000 FF, SDR-2-CON-SL-ZA-2950 FF | 76% | 1d | 2026-09-30 | 2026-10-24 | 45d | 0d | SIC- Cost; Electrical Forman [135.79 h]; Electrical Technician [1060.45 h]; Electrical Helper [135.79 h]; Labor [135.79 h] | 35,933.57 |  | Z G |
|  | 11 | **Install Footings** |  | 2026-08-13 | 2026-11-01 |  |  |  |  |  |  |  |  |  |  |  |
| SDR-2-CON-SL-ZA-3240 |  | Install Footings | 21d | 2026-08-13 A | 2026-11-01 | SDR-2-CON-SL-ZA-3230 FF | 60% | 1d | 2026-10-25 | 2026-11-17 | 59d | 0d | SIC- Cost; Electrical Engineer [135.79 h]; Electrical Forman [135.79 h]; Electrical Technician [1480.81 h]; Electrical Helper [592.32 h]; Labor [135.79 h] | 35,933.57 |  | Z G |
|  | 12 | **Backfilling** |  | 2026-11-02 | 2026-11-24 |  |  |  |  |  |  |  |  |  |  |  |
| SDR-2-CON-SL-ZA-3260 |  | Backfilling over LV Cables of Street lighting | 20d | 2026-11-02 | 2026-11-24 | SDR-2-CON-SL-ZA-3240 |  |  |  |  | 59d | 0d | SIC- Cost; Electrical Engineer [12.8 h]; Electrical Forman [12.8 h]; Electrical Technician [12.8 h]; Electrical Helper [12.8 h]; Excavator [20 h]; Dump Truck [10 h]; Compactor [20 h]; Compactor Operator [6.4 h]; Dum Truck Operator [6.4 h]; Labor [12.8 h] | 35,933.57 |  | Z G |
|  | 13 | **Install pole** |  | 2026-12-03 | 2026-12-27 |  |  |  |  |  |  |  |  |  |  |  |
| SDR-2-CON-SL-ZA-3250 |  | Install Pole | 21d | 2026-12-03 | 2026-12-27 | SDR-2-CON-SL-ZA-3240, SDR-2-CON-SL-ZA-3260 FS+7d |  |  |  |  | 59d | 29d | SIC- Cost; Electrical Engineer [67.9 h]; Electrical Forman [67.9 h]; Electrical Technician [67.9 h]; Electrical Helper [67.9 h]; Labor [67.9 h] | 251,534.94 |  | Z G |
|  | 6 | **Street Lighting IN ( PH2-G-MCE0 )** |  | 2026-07-04 | 2027-01-11 |  |  |  |  |  |  |  |  |  |  |  |
|  | 10 | **Excavation** |  | 2026-07-04 | 2026-11-01 |  |  |  |  |  |  |  |  |  |  |  |
| SDR-2-CON-SL-ZA-3270 |  | Excavation for LV Cable drawpits & trenches | 21d | 2026-07-04 A | 2026-11-01 | SDR-2-CON-SL-ZA-3590 FF, SDR-2-CON-SL-ZA-2950 FF | 76% | 1d | 2026-09-12 | 2026-10-06 | 22d | 0d | SIC- Cost; Electrical Forman [135.79 h]; Electrical Technician [135.79 h]; Electrical Helper [135.79 h]; Labor [135.79 h]; Excavator [25.9 h]; Excavator Operator [706.97 h] | 40,225.51 |  | Z G |
|  | 11 | **Install Footings** |  | 2026-08-13 | 2026-11-01 |  |  |  |  |  |  |  |  |  |  |  |
| SDR-2-CON-SL-ZA-3280 |  | Install Footings | 21d | 2026-08-13 A | 2026-11-01 | SDR-2-CON-SL-ZA-3270 FF | 60% | 1d | 2026-10-07 | 2026-10-31 | 22d | 0d | SIC- Cost; Electrical Forman [135.79 h]; Electrical Technician [135.79 h]; Electrical Helper [135.79 h]; Labor [135.79 h] | 40,225.51 |  | Z G |

| ID | WBS | Activity | Duration | Start | Finish | Predecessors | Complete | Remaining | Planned start | Planned finish | Total float | Free float | Resources | Cost | ZONE G |
| --- | --- | --- | --- | --- | --- | --- | --- | --- | --- | --- | --- | --- | --- | --- | --- |
|  | 12 | **Backfilling** |  | 2026-11-02 | 2026-11-24 |  |  |  |  |  |  |  |  |  |  |
| SDR-2-CON-SL-ZA-3300 |  | Backfilling over LV Cables of Street lighting | 20d | 2026-11-02 | 2026-11-24 | SDR-2-CON-SL-ZA-3280 |  |  |  |  | 22d | 10d | SIC- Cost; Electrical Forman [135.79 h]; Electrical Technician [135.79 h]; Electrical Helper [135.79 h]; Labor [135.79 h] | 40,225.51 | Z G |
|  | 13 | **Install pole** |  | 2026-12-19 | 2027-01-11 |  |  |  |  |  |  |  |  |  |  |
| SDR-2-CON-SL-ZA-3290 |  | Install Pole | 21d | 2026-12-19 | 2027-01-11 | SDR-2-CON-CC-ZG-1610, SDR-2-CON-SL-ZA-3300 FS+10d |  |  |  |  | 12d | 0d | SIC- Cost; Electrical Forman [67.9 h]; Electrical Technician [67.9 h]; Electrical Helper [67.9 h]; Labor [67.9 h] | 281,578.51 | Z G |
|  | 7 | **Street Lighting IN ( PH2-G-MCF0 )** |  | 2026-07-04 | 2026-12-30 |  |  |  |  |  |  |  |  |  |  |
|  | 10 | **Excavation** |  | 2026-07-04 | 2026-11-01 |  |  |  |  |  |  |  |  |  |  |
| SDR-2-CON-SL-ZA-3310 |  | Excavation for LV Cable drawpits & trenches | 21d | 2026-07-04 A | 2026-11-01 | SDR-2-CON-SL-ZA-3230 FF, SDR-2-CON-SL-ZA-3270 FF | 76% | 1d | 2026-09-30 | 2026-10-24 | 45d | 0d | SIC- Cost; Electrical Forman [135.79 h]; Electrical Technician [135.79 h]; Electrical Helper [135.79 h]; Labor [135.79 h]; Excavator [25.9 h]; Excavator Operator [135.79 h] | 40,225.51 | Z G |
|  | 11 | **Install Footings** |  | 2026-08-13 | 2026-11-01 |  |  |  |  |  |  |  |  |  |  |
| SDR-2-CON-SL-ZA-3320 |  | Install Footings | 20d | 2026-08-13 A | 2026-11-01 | SDR-2-CON-SL-ZA-3310 FF | 60% | 1d | 2026-10-25 | 2026-11-16 | 62d | 0d | SIC- Cost; Electrical Forman [135.79 h]; Electrical Technician [135.79 h]; Electrical Helper [135.79 h]; Labor [135.79 h] | 40,225.51 | Z G |
|  | 12 | **Backfilling** |  | 2026-11-02 | 2026-11-24 |  |  |  |  |  |  |  |  |  |  |
| SDR-2-CON-SL-ZA-3340 |  | Backfilling over LV Cables of Street lighting | 20d | 2026-11-02 | 2026-11-24 | SDR-2-CON-SL-ZA-3320 |  |  |  |  | 62d | 0d | SIC- Cost; Electrical Forman [135.79 h]; Electrical Technician [135.79 h]; Electrical Helper [135.79 h]; Labor [135.79 h]; Excavator [12 h]; Excavator Operator [135.79 h] | 40,225.51 | Z G |
|  | 13 | **Install pole** |  | 2026-12-07 | 2026-12-30 |  |  |  |  |  |  |  |  |  |  |
| SDR-2-CON-SL-ZA-3330 |  | Install Pole | 21d | 2026-12-07 | 2026-12-30 | SDR-2-CON-SL-ZA-3340 FS+10d |  |  |  |  | 62d | 5d | SIC- Cost; Electrical Forman [67.9 h]; Electrical Technician [67.9 h]; Electrical Helper [67.9 h]; Labor [67.9 h] | 281,578.51 | Z G |
|  | 4 | **Street Lighting IN ( PH2-G-MCG0 )** |  | 2026-07-04 | 2026-12-30 |  |  |  |  |  |  |  |  |  |  |
|  | 10 | **Excavation** |  | 2026-07-04 | 2026-11-01 |  |  |  |  |  |  |  |  |  |  |
| SDR-2-CON-SL-ZA-3350 |  | Excavation for LV Cable drawpits & trenches | 21d | 2026-07-04 A | 2026-11-01 | SDR-2-CON-SL-ZA-3310 FF | 76% | 1d | 2026-09-30 | 2026-10-24 | 45d | 0d | SIC- Cost; Electrical Forman [135.79 h]; Electrical Technician [135.79 h]; Electrical Helper [135.79 h]; Labor [135.79 h]; Excavator [25.75 h]; Excavator Operator [135.79 h] | 40,225.51 | Z G |
|  | 11 | **Install Footings** |  | 2026-08-13 | 2026-11-01 |  |  |  |  |  |  |  |  |  |  |
| SDR-2-CON-SL-ZA-3360 |  | Install Footings | 20d | 2026-08-13 A | 2026-11-01 | SDR-2-CON-SL-ZA-3350 FF | 62% | 1d | 2026-10-25 | 2026-11-16 | 62d | 0d | SIC- Cost; Electrical Forman [135.79 h]; Electrical Technician [135.79 h]; Electrical Helper [135.79 h]; Labor [135.79 h] | 40,225.51 | Z G |
|  | 12 | **Backfilling** |  | 2026-10-06 | 2026-11-24 |  |  |  |  |  |  |  |  |  |  |
| SDR-2-CON-SL-ZA-3380 |  | Backfilling over LV Cables of Street lighting | 20d | 2026-10-06 A | 2026-11-24 | SDR-2-CON-SL-ZA-3360 | 25% | 20d | 2026-10-13 | 2026-11-04 | 62d | 0d | SIC- Cost; Electrical Forman [135.79 h]; Electrical Technician [135.79 h]; Electrical Helper [135.79 h]; Labor [135.79 h]; Excavator [12 h]; Excavator Operator [135.79 h] | 40,225.51 | Z G |
|  | 13 | **Install pole** |  | 2026-12-07 | 2026-12-30 |  |  |  |  |  |  |  |  |  |  |
| SDR-2-CON-SL-ZA-3370 |  | Install Pole | 21d | 2026-12-07 | 2026-12-30 | SDR-2-CON-SL-ZA-3380 FS+10d |  |  |  |  | 62d | 5d | SIC- Cost; Electrical Forman [67.9 h]; Electrical Technician [67.9 h]; Electrical Helper [67.9 h]; Labor [67.9 h] | 281,578.51 | Z G |
|  | 1 | **Street Lighting IN ( PH2-G-MCZ0 )** |  | 2026-07-01 | 2026-11-01 |  |  |  |  |  |  |  |  |  |  |
|  | 10 | **Excavation** |  | 2026-07-01 | 2026-11-01 |  |  |  |  |  |  |  |  |  |  |
| SDR-2-CON-SL-ZA-3390 |  | Excavation for LV Cable drawpits & trenches | 21d | 2026-07-01 A | 2026-11-01 | SDR-2-CON-SL-ZA-3350 FF | 75% | 1d | 2026-10-04 | 2026-10-27 | 45d | 0d | SIC- Cost; Electrical Forman [135.79 h]; Electrical Technician [135.79 h]; Electrical Helper [135.79 h]; Labor [135.79 h] | 40,225.51 | Z G |

| ID | WBS | Activity | Duration | Start | Finish | Predecessors | Complete | Remaining | Planned start | Planned finish | Total float | Free float | Resources | Cost | ZONE G |
| --- | --- | --- | --- | --- | --- | --- | --- | --- | --- | --- | --- | --- | --- | --- | --- |
|  | 11 | **Install Footings** |  | 2026-08-13 | 2026-11-01 |  |  |  |  |  |  |  |  |  |  |
| SDR-2-CON-SL-ZA-3400 |  | Install Footings | 21d | 2026-08-13 A | 2026-11-01 | SDR-2-CON-SL-ZA-3390 FF | 60% | 1d | 2026-10-28 | 2026-11-21 | 113d | 0d | SIC- Cost; Electrical Forman [135.79 h]; Electrical Technician [135.79 h]; Electrical Helper [135.79 h]; Labor [135.79 h] | 40,225.51 | Z G |
|  | 12 | **Backfilling** |  | 2026-07-20 | 2026-11-01 |  |  |  |  |  |  |  |  |  |  |
| SDR-2-CON-SL-ZA-3420 |  | Backfilling over LV Cables of Street lighting | 21d | 2026-07-20 A | 2026-11-01 | SDR-2-CON-SL-ZA-3400 FF | 50% | 1d | 2026-11-22 | 2026-12-15 | 113d | 0d | SIC- Cost; Electrical Forman [135.79 h]; Electrical Technician [135.79 h]; Electrical Helper [135.79 h]; Labor [135.79 h]; Excavator [12 h]; Excavator Operator [135.79 h] | 40,225.51 | Z G |
|  | 13 | **Install pole** |  | 2026-07-30 | 2026-11-01 |  |  |  |  |  |  |  |  |  |  |
| SDR-2-CON-SL-ZA-3410 |  | Install Pole | 21d | 2026-07-30 A | 2026-11-01 | SDR-2-CON-SL-ZA-3420 FF | 50% | 1d | 2026-12-28 | 2027-01-20 | 113d | 56d | SIC- Cost; Electrical Forman [67.9 h]; Electrical Technician [67.9 h]; Electrical Helper [67.9 h]; Labor [67.9 h] | 281,578.51 | Z G |
|  | 10 | **Lighting Pole Panels** |  | 2026-11-01 | 2027-02-02 |  |  |  |  |  |  |  |  |  |  |
|  | 1 | **Excavation** |  | 2026-11-01 | 2026-11-24 |  |  |  |  |  |  |  |  |  |  |
| SDR-2-CON-SL-ZA-3430 |  | Street Lighting Panels Excavation | 21d | 2026-11-01 | 2026-11-24 | SDR-2-CON-SL-ZA-3390 SS+5d |  |  |  |  | 45d | 0d | SIC- Cost; Electrical Forman [76.43 h]; Electrical Technician [76.43 h]; Electrical Helper [76.43 h]; Labor [76.43 h]; Excavator [12 h]; Excavator Operator [76.43 h] | 3,965 | Z G |
|  | 2 | **Install Footings** |  | 2026-11-25 | 2026-12-16 |  |  |  |  |  |  |  |  |  |  |
| SDR-2-CON-SL-ZA-3440 |  | Installation Footings Street Lighting Panels | 19d | 2026-11-25 | 2026-12-16 | SDR-2-CON-SL-ZA-3430 |  |  |  |  | 71d | 0d | SIC- Cost; Electrical Forman [57.32 h]; Electrical Technician [57.32 h]; Electrical Helper [57.32 h]; Labor [57.32 h] | 3,965 | Z G |
|  | 3 | **Backfilling** |  | 2026-12-17 | 2027-01-09 |  |  |  |  |  |  |  |  |  |  |
| SDR-2-CON-SL-ZA-3450 |  | Street Lighting Panels Backfilling | 20d | 2026-12-17 | 2027-01-09 | SDR-2-CON-SL-ZA-3440 |  |  |  |  | 71d | 0d | SIC- Cost; Electrical Forman [50.28 h]; Electrical Technician [50.28 h]; Electrical Helper [50.28 h]; Labor [50.28 h] | 3,965 | Z G |
|  | 4 | **Install pole** |  | 2027-01-10 | 2027-02-02 |  |  |  |  |  |  |  |  |  |  |
| SDR-2-CON-SL-ZA-3460 |  | Street Lighting Panels Installation | 21d | 2027-01-10 | 2027-02-02 | SDR-2-CON-SL-ZA-3450 |  |  |  |  | 71d | 0d | SIC- Cost; Electrical Forman [67.9 h]; Electrical Technician [85.98 h]; Electrical Helper [67.9 h]; Labor [81.48 h] | 27,755.01 | Z G |
|  | 11 | **Ring Main Unit** |  | 2026-11-25 | 2027-01-28 |  |  |  |  |  |  |  |  |  |  |
|  | 1 | **Leveling** |  | 2026-11-25 | 2026-12-17 |  |  |  |  |  |  |  |  |  |  |
| SDR-2-CON-SL-ZA-3470 |  | Ring Main Unit leveling | 20d | 2026-11-25 | 2026-12-17 | SDR-2-CON-SL-ZA-3430, SDR-2-CON-SL-ZA-2660 SS |  |  |  |  | 45d | 0d | SIC- Cost; Electrical Forman [114.64 h]; Electrical Technician [114.64 h]; Electrical Helper [114.64 h]; Labor [114.64 h] | 11,325.99 | Z G |
|  | 2 | **Lean Concrete** |  | 2026-12-19 | 2027-01-05 |  |  |  |  |  |  |  |  |  |  |
| SDR-2-CON-SL-ZA-3480 |  | Ring Main Unit Lean Concrete | 16d | 2026-12-19 | 2027-01-05 | SDR-2-CON-SL-ZA-3470 |  |  |  |  | 45d | 0d | SIC- Cost; Electrical Forman [50.28 h]; Electrical Technician [50.28 h]; Electrical Helper [50.28 h]; Labor [50.28 h] | 22,651.97 | Z G |
|  | 3 | **Installation** |  | 2027-01-06 | 2027-01-28 |  |  |  |  |  |  |  |  |  |  |
| SDR-2-CON-SL-ZA-3490 |  | Ring Main Unit installation for Street Lighting | 20d | 2027-01-06 | 2027-01-28 | SDR-2-CON-SL-ZA-3480 |  |  |  |  | 45d | 8d | SIC- Cost; Electrical Forman [135.79 h]; Electrical Technician [135.79 h]; Electrical Helper [124.2 h]; Labor [124.2 h] | 79,281.91 | Z G |
|  | 12 | **Feeder Pillars** |  | 2026-11-14 | 2027-01-21 |  |  |  |  |  |  |  |  |  |  |
|  | 1 | **Leveling** |  | 2026-11-14 | 2026-12-06 |  |  |  |  |  |  |  |  |  |  |
| SDR-2-CON-SL-ZA-3500 |  | Feeder Pillars Leveling | 20d | 2026-11-14 | 2026-12-06 | SDR-2-CON-SL-ZA-2670 SS |  |  |  |  | 37d | 0d | SIC- Cost; Electrical Forman [95.54 h]; Electrical Technician [95.54 h]; Electrical Helper [95.54 h]; Labor [95.54 h] | 1,062.69 | Z G |

| ID | WBS | Activity | Duration | Start | Finish | Predecessors | Complete | Remaining | Planned start | Planned finish | Total float | Free float | Resources | Cost | ZONE G |
| --- | --- | --- | --- | --- | --- | --- | --- | --- | --- | --- | --- | --- | --- | --- | --- |
|  | 2 | **Lean Concrete** |  | 2026-12-07 | 2026-12-29 |  |  |  |  |  |  |  |  |  |  |
| SDR-2-CON-SL-ZA-3510 |  | Feeder Pillars Lean Concrete | 20d | 2026-12-07 | 2026-12-29 | SDR-2-CON-SL-ZA-3500 |  |  |  |  | 37d | 0d | SIC- Cost; Electrical Forman [40.23 h]; Electrical Technician [40.23 h]; Electrical Helper [40.23 h]; Labor [40.23 h] | 2,125.37 | Z G |
|  | 3 | **Installation** |  | 2026-12-30 | 2027-01-21 |  |  |  |  |  |  |  |  |  |  |
| SDR-2-CON-SL-ZA-3520 |  | Feeder Pillars Installation | 20d | 2026-12-30 | 2027-01-21 | SDR-2-CON-SL-ZA-3510 |  |  |  |  | 37d | 31d | SIC- Cost; Electrical Forman [136.62 h]; Electrical Technician [136.62 h]; Electrical Helper [136.62 h]; Labor [136.62 h] | 7,438.82 | Z G |
|  | 13 | **KWH Frame** |  | 2026-12-31 | 2027-03-16 |  |  |  |  |  |  |  |  |  |  |
|  | 1 | **Leveling** |  | 2026-12-31 | 2027-01-23 |  |  |  |  |  |  |  |  |  |  |
| SDR-2-CON-SL-ZA-3530 |  | KWH meter mounting frame Leveling | 20d | 2026-12-31 | 2027-01-23 | SDR-2-CON-SL-ZA-2680 SS |  |  |  |  | 6d | 0d | SIC- Cost; Electrical Forman [67.9 h]; Electrical Technician [67.9 h]; Electrical Helper [67.9 h]; Labor [67.9 h] | 1,416.84 | Z G |
|  | 2 | **Lean Concrete** |  | 2027-01-24 | 2027-02-15 |  |  |  |  |  |  |  |  |  |  |
| SDR-2-CON-SL-ZA-3540 |  | KWH meter mounting frame Lean Concrete | 20d | 2027-01-24 | 2027-02-15 | SDR-2-CON-SL-ZA-3530 |  |  |  |  | 6d | 0d | SIC- Cost; Electrical Forman [67.9 h]; Electrical Technician [67.9 h]; Electrical Helper [67.9 h]; Labor [67.9 h] | 2,833.69 | Z G |
|  | 3 | **Installation** |  | 2027-02-16 | 2027-03-16 |  |  |  |  |  |  |  |  |  |  |
| SDR-2-CON-SL-ZA-3550 |  | KWH meter mounting frame installation | 20d | 2027-02-16 | 2027-03-16 | SDR-2-CON-SL-ZA-3540 |  |  |  |  | 6d | 0d | SIC- Cost; Electrical Forman [67.9 h]; Electrical Technician [67.9 h]; Electrical Helper [67.9 h]; Labor [67.9 h] | 9,917.9 | Z G |
|  | 14 | **Street Lighting Sub-station** |  | 2027-01-02 | 2027-03-28 |  |  |  |  |  |  |  |  |  |  |
|  | 1 | **Leveling** |  | 2027-01-02 | 2027-01-24 |  |  |  |  |  |  |  |  |  |  |
| SDR-2-CON-SL-ZA-3560 |  | Unit Substation Leveling | 20d | 2027-01-02 | 2027-01-24 | SDR-2-CON-SL-ZA-2690 SS |  |  |  |  | 30d | 0d | SIC- Cost; Electrical Forman [67.9 h]; Electrical Technician [67.9 h]; Electrical Helper [67.9 h]; Labor [67.9 h] | 21,900.12 | Z G |
|  | 2 | **Lean Concrete** |  | 2027-01-25 | 2027-02-15 |  |  |  |  |  |  |  |  |  |  |
| SDR-2-CON-SL-ZA-3570 |  | Unit Substation Lean Concrete | 19d | 2027-01-25 | 2027-02-15 | SDR-2-CON-SL-ZA-3560 |  |  |  |  | 30d | 0d | SIC- Cost; Electrical Forman [85.98 h]; Electrical Technician [85.98 h]; Electrical Helper [85.98 h]; Labor [85.98 h] | 43,800.24 | Z G |
|  | 3 | **Installation** |  | 2027-03-01 | 2027-03-28 |  |  |  |  |  |  |  |  |  |  |
| SDR-2-CON-SL-ZA-3580 |  | Unit Substation Install for Street Lighting | 20d | 2027-03-01 | 2027-03-28 | SDR-2-CON-SL-ZA-3570 FS+10d |  |  |  |  | 30d | 0d | SIC- Cost; Electrical Forman [67.9 h]; Electrical Technician [67.9 h]; Electrical Helper [67.9 h]; Labor [67.9 h] | 153,300.82 | Z G |
|  | 2 | **MV Network** |  | 2026-07-19 | 2026-12-06 |  |  |  |  |  |  |  |  |  |  |
|  | 1 | **LOOP 1** |  | 2026-07-19 | 2026-12-06 |  |  |  |  |  |  |  |  |  |  |
|  | 6 | **Excavation** |  | 2026-07-19 | 2026-11-01 |  |  |  |  |  |  |  |  |  |  |
| SDR-2-CON-MV-ZA-1280 |  | Excavation Works | 21d | 2026-07-19 A | 2026-11-01 | SDR-2-CON-SL-ZA-1000 FF | 50% | 1d | 2026-08-27 | 2026-09-20 | 53d | 0d | SIC- Cost; Electrical Forman [108.63 h]; Electrical Technician [108.63 h]; Electrical Helper [108.63 h]; Labor [108.63 h]; Excavator [12 h]; Excavator Operator [108.63 h] | 184,030.93 | Z G |
|  | 7 | **Pipe laying** |  | 2026-08-04 | 2026-11-01 |  |  |  |  |  |  |  |  |  |  |
| SDR-2-CON-MV-ZA-1290 |  | Pipe Laying | 21d | 2026-08-04 A | 2026-11-01 | SDR-2-CON-MV-ZA-1280 FF | 50% | 1d | 2026-09-21 | 2026-10-15 | 53d | 0d | SIC- Cost; Electrical Forman [108.63 h]; Electrical Technician [108.63 h]; Electrical Helper [191.07 h]; Labor [108.63 h] | 368,061.84 | Z G |

| ID | WBS | Activity | Duration | Start | Finish | Predecessors | Complete | Remaining | Planned start | Planned finish | Total float | Free float | Resources | Cost | ZONE G |
| --- | --- | --- | --- | --- | --- | --- | --- | --- | --- | --- | --- | --- | --- | --- | --- |
|  | 8 | **Backfilling** |  | 2026-08-08 | 2026-11-01 |  |  |  |  |  |  |  |  |  |  |
| SDR-2-CON-MV-ZA-1310 |  | Backfilling Works | 12d | 2026-08-08 A | 2026-11-01 | SDR-2-CON-MV-ZA-1290 FF | 25% | 1d | 2026-10-17 | 2026-10-29 | 53d | 0d | SIC- Cost; Electrical Forman [108.63 h]; Electrical Technician [108.63 h]; Electrical Helper [108.63 h]; Labor [108.63 h]; Excavator [6 h]; Excavator Operator [108.63 h] | 184,030.93 | Z G |
|  | 9 | **Pulling Cable** |  | 2026-11-14 | 2026-12-06 |  |  |  |  |  |  |  |  |  |  |
| SDR-2-CON-MV-ZA-1300 |  | Pulling Cable | 20d | 2026-11-14 | 2026-12-06 | SDR-2-CON-MV-ZA-1290, SDR-2-CON-MV-ZA-1310 FS+10d |  |  |  |  | 53d | 49d | SIC- Cost; Electrical Forman [108.63 h]; Electrical Technician [108.63 h]; Electrical Helper [108.63 h]; Labor [108.63 h] | 1,104,185.52 | Z G |
|  | 2 | **LOOP 2** |  | 2026-08-01 | 2026-12-06 |  |  |  |  |  |  |  |  |  |  |
|  | 6 | **Excavation** |  | 2026-08-01 | 2026-11-01 |  |  |  |  |  |  |  |  |  |  |
| SDR-2-CON-MV-ZA-1320 |  | Excavation Works | 21d | 2026-08-01 A | 2026-11-01 | SDR-2-CON-MV-ZA-1280 FF | 50% | 1d | 2026-08-27 | 2026-09-20 | 59d | 0d | SIC- Cost; Electrical Forman [108.63 h]; Electrical Technician [108.63 h]; Electrical Helper [108.63 h]; Labor [108.63 h]; Excavator [12 h]; Excavator Operator [108.63 h] | 184,030.93 | Z G |
|  | 7 | **Pipe laying** |  | 2026-08-04 | 2026-11-01 |  |  |  |  |  |  |  |  |  |  |
| SDR-2-CON-MV-ZA-1330 |  | Pipe Laying | 20d | 2026-08-04 A | 2026-11-01 | SDR-2-CON-MV-ZA-1320 FF | 50% | 1d | 2026-09-21 | 2026-10-14 | 59d | 0d | SIC- Cost; Electrical Forman [108.63 h]; Electrical Technician [108.63 h]; Electrical Helper [108.63 h]; Labor [108.63 h] | 368,061.84 | Z G |
|  | 8 | **Backfilling** |  | 2026-08-08 | 2026-11-01 |  |  |  |  |  |  |  |  |  |  |
| SDR-2-CON-MV-ZA-1350 |  | Backfilling Works | 20d | 2026-08-08 A | 2026-11-01 | SDR-2-CON-MV-ZA-1330 FF | 25% | 1d | 2026-10-15 | 2026-11-07 | 59d | 0d | SIC- Cost; Electrical Forman [108.63 h]; Electrical Technician [108.63 h]; Electrical Helper [108.63 h]; Labor [108.63 h]; Excavator [6 h]; Excavator Operator [6.03 h] | 184,030.93 | Z G |
|  | 9 | **Pulling Cable** |  | 2026-11-14 | 2026-12-06 |  |  |  |  |  |  |  |  |  |  |
| SDR-2-CON-MV-ZA-1340 |  | Pulling Cable | 20d | 2026-11-14 | 2026-12-06 | SDR-2-CON-MV-ZA-1330, SDR-2-CON-MV-ZA-1350 FS+10d |  |  |  |  | 59d | 54.19d | SIC- Cost; Electrical Forman [67.9 h]; Electrical Technician [67.9 h]; Electrical Helper [67.9 h]; Labor [67.9 h] | 1,104,185.52 | Z G |
|  | 3 | **TELECOMMUNICATIONS Works** |  | 2026-07-01 | 2026-12-17 |  |  |  |  |  |  |  |  |  |  |
|  | 5 | **TELECOMMUNICATION IN ( PH2-G-MCA0 )** |  | 2026-07-01 | 2026-12-17 |  |  |  |  |  |  |  |  |  |  |
|  | 3 | **Ducts** |  | 2026-07-01 | 2026-12-17 |  |  |  |  |  |  |  |  |  |  |
|  | 2 | **Excavation** |  | 2026-07-01 | 2026-11-01 |  |  |  |  |  |  |  |  |  |  |
| SDR-2-CON-TE-ZA-4200 |  | Excavation for telecom crossing ducts & trenches | 21d | 2026-07-01 A | 2026-11-01 | SDR-2-CON-SL-ZA-1000 FF | 53% | 1d | 2026-09-14 | 2026-10-08 | 49d | 0d | SIC- Cost; Electrical Forman [135.79 h]; Electrical Technician [135.79 h]; Electrical Helper [135.79 h]; Excavator [12 h]; Excavator Operator [135.79 h] | 7,189.75 | Z G |
|  | 5 | **Pipe laying** |  | 2026-08-13 | 2026-11-01 |  |  |  |  |  |  |  |  |  |  |
| SDR-2-CON-TE-ZA-4210 |  | HDPE Pipes for Telecom Installation | 18d | 2026-08-13 A | 2026-11-01 | SDR-2-CON-TE-ZA-4200 FF | 52% | 1d | 2026-10-10 | 2026-10-29 | 49d | 0d | SIC- Cost; Electrical Forman [135.79 h]; Electrical Technician [135.79 h]; Electrical Helper [135.79 h] | 14,379.51 | Z G |
|  | 6 | **Backfilling** |  | 2026-11-02 | 2026-11-24 |  |  |  |  |  |  |  |  |  |  |
| SDR-2-CON-TE-ZA-4220 |  | Backfilling over HDPE Telecom Pipes | 20d | 2026-11-02 | 2026-11-24 | SDR-2-CON-TE-ZA-4210 |  |  |  |  | 49d | 0d | SIC- Cost; Electrical Forman [135.79 h]; Electrical Technician [135.79 h]; Electrical Helper [135.79 h] | 7,189.75 | Z G |
|  | 7 | **Pulling Cable** |  | 2026-11-25 | 2026-12-17 |  |  |  |  |  |  |  |  |  |  |
| SDR-2-CON-TE-ZA-4270 |  | Pulling Cable | 20d | 2026-11-25 | 2026-12-17 | SDR-2-CON-TE-ZA-4220 |  |  |  |  | 49d | 44.19d | SIC- Cost; Electrical Forman [25.6 h]; Electrical Technician [25.6 h]; Electrical Helper [25.6 h] | 43,138.51 | Z G |

| ID | WBS | Activity | Duration | Start | Finish | Predecessors | Complete | Remaining | Planned start | Planned finish | Total float | Free float | Resources | Cost | ZONE G |
| --- | --- | --- | --- | --- | --- | --- | --- | --- | --- | --- | --- | --- | --- | --- | --- |
|  | 4 | **Manholes** |  | 2026-08-15 | 2026-11-24 |  |  |  |  |  |  |  |  |  |  |
|  | 1 | **Excavation** |  | 2026-08-15 | 2026-11-01 |  |  |  |  |  |  |  |  |  |  |
| SDR-2-CON-TE-ZA-4230 |  | Excavation for Telecom Manholes | 21d | 2026-08-15 A | 2026-11-01 | SDR-2-CON-TE-ZA-4200 FF | 60% | 1d | 2026-09-14 | 2026-10-08 | 69d | 0d | SIC- Cost; Electrical Forman [135.79 h]; Electrical Technician [135.79 h]; Electrical Helper [135.79 h]; Excavator [12 h]; Excavator Operator [124.2 h] | 8,073.39 | Z G |
|  | 2 | **Bedding Work** |  | 2026-08-24 | 2026-11-01 |  |  |  |  |  |  |  |  |  |  |
| SDR-2-CON-TE-ZA-4280 |  | Sand bedding for Telecom Manhole | 17d | 2026-08-24 A | 2026-11-01 | SDR-2-CON-TE-ZA-4230 FF | 25% | 1d | 2026-10-10 | 2026-10-28 | 69d | 0d | SIC- Cost; Electrical Forman [143.3 h]; Electrical Technician [143.3 h]; Electrical Helper [143.3 h] | 5,382.27 | Z G |
|  | 3 | **Install Manholes** |  | 2026-08-15 | 2026-11-01 |  |  |  |  |  |  |  |  |  |  |
| SDR-2-CON-TE-ZA-4240 |  | Installation of Telecom Manhole | 19d | 2026-08-15 A | 2026-11-01 | SDR-2-CON-TE-ZA-4230 FF, SDR-2-CON-TE-ZA-4280 FF | 50% | 1d | 2026-10-29 | 2026-11-19 | 69d | 0d | SIC- Cost; Electrical Forman [135.79 h]; Electrical Technician [135.79 h]; Electrical Helper [135.79 h] | 24,220.18 | Z G |
|  | 4 | **Testting** |  | 2026-09-02 | 2026-11-01 |  |  |  |  |  |  |  |  |  |  |
| SDR-2-CON-TE-ZA-4250 |  | Telecom Manhole finishing works | 7d | 2026-09-02 A | 2026-11-01 | SDR-2-CON-TE-ZA-4240 FF | 25% | 1d | 2026-11-21 | 2026-11-28 | 69d | 0d | SIC- Cost; Electrical Forman [100.31 h]; Electrical Technician [100.31 h]; Electrical Helper [100.31 h] | 5,382.27 | Z G |
|  | 5 | **Backfilling** |  | 2026-11-02 | 2026-11-24 |  |  |  |  |  |  |  |  |  |  |
| SDR-2-CON-TE-ZA-4260 |  | Backfilling over Telecom Manhole | 20d | 2026-11-02 | 2026-11-24 | SDR-2-CON-TE-ZA-4250 |  |  |  |  | 69d | 64.19d | SIC- Cost; Electrical Forman [135.79 h]; Electrical Technician [135.79 h]; Electrical Helper [135.79 h] | 10,764.52 | Z G |
|  | 6 | **TELECOMMUNICATION IN ( PH2-G-MCE0 )** |  | 2026-07-06 | 2026-12-03 |  |  |  |  |  |  |  |  |  |  |
|  | 3 | **Ducts** |  | 2026-07-06 | 2026-11-01 |  |  |  |  |  |  |  |  |  |  |
|  | 2 | **Excavation** |  | 2026-07-06 | 2026-07-20 |  |  |  |  |  |  |  |  |  |  |
| SDR-2-CON-TE-ZA-4290 |  | Excavation for telecom crossing ducts & trenches | 21d | 2026-07-06 A | 2026-07-20 A | SDR-2-CON-SL-ZA-1000 SS | 100% |  | 2026-09-14 | 2026-10-08 |  |  | SIC- Cost; Electrical Forman [135.79 h]; Electrical Technician [135.79 h]; Electrical Helper [135.79 h]; Excavator [12 h]; Excavator Operator [135.79 h] | 7,189.75 | Z G |
|  | 5 | **Pipe laying** |  | 2026-07-16 | 2026-11-01 |  |  |  |  |  |  |  |  |  |  |
| SDR-2-CON-TE-ZA-4300 |  | HDPE Pipes for Telecom Installation | 20d | 2026-07-16 A | 2026-11-01 | SDR-2-CON-TE-ZA-4290 | 50% | 1d | 2026-10-10 | 2026-11-01 | 76d | 0d | SIC- Cost; Electrical Forman [135.81 h]; Electrical Technician [135.79 h]; Electrical Helper [135.79 h] | 14,379.51 | Z G |
|  | 6 | **Backfilling** |  | 2026-07-20 | 2026-11-01 |  |  |  |  |  |  |  |  |  |  |
| SDR-2-CON-TE-ZA-4310 |  | Backfilling over HDPE Telecom Pipes | 20d | 2026-07-20 A | 2026-11-01 | SDR-2-CON-TE-ZA-4300 FF | 50% | 1d | 2026-11-02 | 2026-11-24 | 76d | 0d | SIC- Cost; Electrical Forman [135.79 h]; Electrical Technician [135.79 h]; Electrical Helper [135.79 h]; Excavator [6 h]; Excavator Operator [6.03 h] | 7,189.75 | Z G |
|  | 7 | **Pulling Cable** |  | 2026-07-16 | 2026-11-01 |  |  |  |  |  |  |  |  |  |  |
| SDR-2-CON-TE-ZA-4360 |  | Pulling Cable | 20d | 2026-07-16 A | 2026-11-01 | SDR-2-CON-TE-ZA-4310 FF | 50% | 1d | 2026-11-25 | 2026-12-17 | 76d | 0d | SIC- Cost; Electrical Forman [135.79 h]; Electrical Technician [135.79 h]; Electrical Helper [135.79 h] | 43,138.51 | Z G |
|  | 4 | **Manholes** |  | 2026-08-15 | 2026-12-03 |  |  |  |  |  |  |  |  |  |  |
|  | 1 | **Excavation** |  | 2026-08-15 | 2026-11-01 |  |  |  |  |  |  |  |  |  |  |
| SDR-2-CON-TE-ZA-4320 |  | Excavation for Telecom Manholes | 21d | 2026-08-15 A | 2026-11-01 | SDR-2-CON-TE-ZA-4290 SS | 55% | 1d | 2026-09-14 | 2026-10-08 | 61d | 0d | SIC- Cost; Electrical Forman [135.79 h]; Electrical Technician [135.79 h]; Electrical Helper [135.79 h]; Excavator [12 h]; Excavator Operator [135.79 h] | 8,073.39 | Z G |

| ID | WBS | Activity | Duration | Start | Finish | Predecessors | Complete | Remaining | Planned start | Planned finish | Total float | Free float | Resources | Cost | ZONE G |
| --- | --- | --- | --- | --- | --- | --- | --- | --- | --- | --- | --- | --- | --- | --- | --- |
|  | 2 | **Bedding Work** |  | 2026-08-17 | 2026-11-01 |  |  |  |  |  |  |  |  |  |  |
| SDR-2-CON-TE-ZA-4370 |  | Sand bedding for Telecom Manhole | 15d | 2026-08-17 A | 2026-11-01 | SDR-2-CON-TE-ZA-4320 FF | 50% | 1d | 2026-10-10 | 2026-10-26 | 61d | 0d | SIC- Cost; Electrical Forman [38.41 h]; Electrical Technician [38.41 h]; Electrical Helper [38.41 h] | 5,382.27 | Z G |
|  | 3 | **Install Manholes** |  | 2026-08-19 | 2026-11-01 |  |  |  |  |  |  |  |  |  |  |
| SDR-2-CON-TE-ZA-4330 |  | Installation of Telecom Manhole | 19d | 2026-08-19 A | 2026-11-01 | SDR-2-CON-TE-ZA-4320 FF, SDR-2-CON-TE-ZA-4370 FF | 50% | 1d | 2026-10-27 | 2026-11-17 | 61d | 0d | SIC- Cost; Electrical Forman [143.3 h]; Electrical Technician [143.3 h]; Electrical Helper [143.3 h] | 24,220.18 | Z G |
|  | 4 | **Testting** |  | 2026-11-02 | 2026-11-09 |  |  |  |  |  |  |  |  |  |  |
| SDR-2-CON-TE-ZA-4340 |  | Telecom Manhole finishing works | 7d | 2026-11-02 | 2026-11-09 | SDR-2-CON-TE-ZA-4330 |  |  |  |  | 61d | 0d | SIC- Cost; Electrical Forman [66.88 h]; Electrical Technician [66.88 h]; Electrical Helper [66.88 h] | 5,382.27 | Z G |
|  | 5 | **Backfilling** |  | 2026-11-10 | 2026-12-03 |  |  |  |  |  |  |  |  |  |  |
| SDR-2-CON-TE-ZA-4350 |  | Backfilling over Telecom Manhole | 21d | 2026-11-10 | 2026-12-03 | SDR-2-CON-TE-ZA-4340 |  |  |  |  | 61d | 56.19d | SIC- Cost; Electrical Forman [143.3 h]; Electrical Technician [143.3 h]; Electrical Helper [143.3 h] | 10,764.52 | Z G |
|  | 7 | **TELECOMMUNICATION IN ( PH2-G-MCF0 )** |  | 2026-07-06 | 2026-12-02 |  |  |  |  |  |  |  |  |  |  |
|  | 3 | **Ducts** |  | 2026-07-06 | 2026-11-01 |  |  |  |  |  |  |  |  |  |  |
|  | 2 | **Excavation** |  | 2026-07-06 | 2026-11-01 |  |  |  |  |  |  |  |  |  |  |
| SDR-2-CON-TE-ZA-4380 |  | Excavation for telecom crossing ducts & trenches | 21d | 2026-07-06 A | 2026-11-01 | SDR-2-CON-SL-ZA-1000 FF, SDR-2-CON-TE-ZA-4320 FF | 50% | 1d | 2026-10-10 | 2026-11-02 | 76d | 0d | SIC- Cost; Electrical Forman [135.79 h]; Electrical Technician [135.79 h]; Electrical Helper [135.79 h]; Excavator [12 h]; Excavator Operator [135.79 h] | 7,189.75 | Z G |
|  | 5 | **Pipe laying** |  | 2026-07-16 | 2026-11-01 |  |  |  |  |  |  |  |  |  |  |
| SDR-2-CON-TE-ZA-4390 |  | HDPE Pipes for Telecom Installation | 19d | 2026-07-16 A | 2026-11-01 | SDR-2-CON-TE-ZA-4380 FF | 50% | 1d | 2026-11-03 | 2026-11-24 | 103d | 0d | SIC- Cost; Electrical Forman [135.79 h]; Electrical Technician [135.79 h]; Electrical Helper [135.79 h] | 14,379.51 | Z G |
|  | 6 | **Backfilling** |  | 2026-08-16 | 2026-11-01 |  |  |  |  |  |  |  |  |  |  |
| SDR-2-CON-TE-ZA-4400 |  | Backfilling over HDPE Telecom Pipes | 20d | 2026-08-16 A | 2026-11-01 | SDR-2-CON-TE-ZA-4390 FF | 50% | 1d | 2026-11-25 | 2026-12-17 | 103d | 0d | SIC- Cost; Electrical Forman [135.79 h]; Electrical Technician [135.79 h]; Electrical Helper [135.79 h] | 7,189.75 | Z G |
|  | 7 | **Pulling Cable** |  | 2026-07-16 | 2026-11-01 |  |  |  |  |  |  |  |  |  |  |
| SDR-2-CON-TE-ZA-4450 |  | Pulling Cable | 21d | 2026-07-16 A | 2026-11-01 | SDR-2-CON-TE-ZA-4400 FF | 50% | 1d | 2026-12-19 | 2027-01-11 | 103d | 27d | SIC- Cost; Electrical Forman [135.79 h]; Electrical Technician [135.79 h]; Electrical Helper [135.79 h] | 43,138.51 | Z G |
|  | 4 | **Manholes** |  | 2026-08-15 | 2026-12-02 |  |  |  |  |  |  |  |  |  |  |
|  | 1 | **Excavation** |  | 2026-08-15 | 2026-11-01 |  |  |  |  |  |  |  |  |  |  |
| SDR-2-CON-TE-ZA-4410 |  | Excavation for Telecom Manholes | 21d | 2026-08-15 A | 2026-11-01 | SDR-2-CON-TE-ZA-4380 FF | 56% | 1d | 2026-10-10 | 2026-11-02 | 76d | 0d | SIC- Cost; Electrical Forman [186.29 h]; Electrical Technician [186.29 h]; Electrical Helper [186.29 h]; Excavator [12 h]; Excavator Operator [124.2 h] | 8,073.39 | Z G |
|  | 2 | **Bedding Work** |  | 2026-08-17 | 2026-11-01 |  |  |  |  |  |  |  |  |  |  |
| SDR-2-CON-TE-ZA-4460 |  | Sand bedding for Telecom Manhole | 20d | 2026-08-17 A | 2026-11-01 | SDR-2-CON-TE-ZA-4410 FF | 50% | 1d | 2026-11-03 | 2026-11-25 | 76d | 0d | SIC- Cost; Electrical Forman [143.3 h]; Electrical Technician [143.3 h]; Electrical Helper [143.3 h] | 5,382.27 | Z G |
|  | 3 | **Install Manholes** |  | 2026-08-19 | 2026-11-01 |  |  |  |  |  |  |  |  |  |  |
| SDR-2-CON-TE-ZA-4420 |  | Installation of Telecom Manhole | 19d | 2026-08-19 A | 2026-11-01 | SDR-2-CON-TE-ZA-4410 FF, SDR-2-CON-TE-ZA-4460 FF | 50% | 1d | 2026-11-26 | 2026-12-17 | 76d | 0d | SIC- Cost; Electrical Forman [67.9 h]; Electrical Technician [67.9 h]; Electrical Helper [67.9 h] | 24,220.18 | Z G |

| ID | WBS | Activity | Duration | Start | Finish | Predecessors | Complete | Remaining | Planned start | Planned finish | Total float | Free float | Resources | Cost | ZONE G |
| --- | --- | --- | --- | --- | --- | --- | --- | --- | --- | --- | --- | --- | --- | --- | --- |
|  | 4 | **Testting** |  | 2026-11-02 | 2026-11-09 |  |  |  |  |  |  |  |  |  |  |
| SDR-2-CON-TE-ZA-4430 |  | Telecom Manhole finishing works | 7d | 2026-11-02 | 2026-11-09 | SDR-2-CON-TE-ZA-4420 |  |  |  |  | 76d | 0d | SIC- Cost; Electrical Forman [67.9 h]; Electrical Technician [67.9 h]; Electrical Helper [67.9 h] | 5,382.27 | Z G |
|  | 5 | **Backfilling** |  | 2026-11-10 | 2026-12-02 |  |  |  |  |  |  |  |  |  |  |
| SDR-2-CON-TE-ZA-4440 |  | Backfilling over Telecom Manhole | 20d | 2026-11-10 | 2026-12-02 | SDR-2-CON-TE-ZA-4430 |  |  |  |  | 76d | 0d | SIC- Cost; Electrical Forman [67.9 h]; Electrical Technician [67.9 h]; Electrical Helper [67.9 h] | 10,764.52 | Z G |
|  | 4 | **TELECOMMUNICATION IN ( PH2-G-MCG0 )** |  | 2026-07-06 | 2026-12-15 |  |  |  |  |  |  |  |  |  |  |
|  | 3 | **Ducts** |  | 2026-07-06 | 2026-11-01 |  |  |  |  |  |  |  |  |  |  |
|  | 2 | **Excavation** |  | 2026-07-06 | 2026-11-01 |  |  |  |  |  |  |  |  |  |  |
| SDR-2-CON-TE-ZA-4470 |  | Excavation for telecom crossing ducts & trenches | 21d | 2026-07-06 A | 2026-11-01 | SDR-2-CON-SL-ZA-1000 FF | 50% | 1d | 2026-09-14 | 2026-10-08 | 73d | 0d | SIC- Cost; Electrical Forman [135.79 h]; Electrical Technician [135.79 h]; Electrical Helper [135.79 h]; Excavator [12 h]; Excavator Operator [135.79 h] | 7,189.75 | Z G |
|  | 5 | **Pipe laying** |  | 2026-07-15 | 2026-11-01 |  |  |  |  |  |  |  |  |  |  |
| SDR-2-CON-TE-ZA-4480 |  | HDPE Pipes for Telecom Installation | 18d | 2026-07-15 A | 2026-11-01 | SDR-2-CON-TE-ZA-4470 FF | 55% | 1d | 2026-10-10 | 2026-10-29 | 73d | 0d | SIC- Cost; Electrical Forman [133.75 h]; Electrical Technician [133.75 h]; Electrical Helper [135.79 h] | 14,379.51 | Z G |
|  | 6 | **Backfilling** |  | 2026-08-16 | 2026-11-01 |  |  |  |  |  |  |  |  |  |  |
| SDR-2-CON-TE-ZA-4490 |  | Backfilling over HDPE Telecom Pipes | 20d | 2026-08-16 A | 2026-11-01 | SDR-2-CON-TE-ZA-4480 FF | 55% | 1d | 2026-10-31 | 2026-11-22 | 73d | 0d | SIC- Cost; Electrical Forman [135.79 h]; Electrical Technician [135.79 h]; Electrical Helper [135.79 h] | 7,189.75 | Z G |
|  | 7 | **Pulling Cable** |  | 2026-07-14 | 2026-11-01 |  |  |  |  |  |  |  |  |  |  |
| SDR-2-CON-TE-ZA-4540 |  | Pulling Cable | 20d | 2026-07-14 A | 2026-11-01 | SDR-2-CON-TE-ZA-4490 FF | 55% | 1d | 2026-11-23 | 2026-12-15 | 73d | 0d | SIC- Cost; Electrical Forman [67.9 h]; Electrical Technician [67.9 h]; Electrical Helper [67.9 h] | 43,138.51 | Z G |
|  | 4 | **Manholes** |  | 2026-08-15 | 2026-12-15 |  |  |  |  |  |  |  |  |  |  |
|  | 1 | **Excavation** |  | 2026-08-15 | 2026-11-01 |  |  |  |  |  |  |  |  |  |  |
| SDR-2-CON-TE-ZA-4500 |  | Excavation for Telecom Manholes | 21d | 2026-08-15 A | 2026-11-01 | SDR-2-CON-TE-ZA-4470 FF | 76% | 1d | 2026-09-14 | 2026-10-08 | 113d | 0d | SIC- Cost; Electrical Forman [67.9 h]; Electrical Technician [67.9 h]; Electrical Helper [67.9 h]; Excavator [12 h]; Excavator Operator [67.9 h] | 8,073.39 | Z G |
|  | 2 | **Bedding Work** |  | 2026-08-17 | 2026-11-01 |  |  |  |  |  |  |  |  |  |  |
| SDR-2-CON-TE-ZA-4550 |  | Sand bedding for Telecom Manhole | 15d | 2026-08-17 A | 2026-11-01 | SDR-2-CON-TE-ZA-4500 FF | 75% | 1d | 2026-10-10 | 2026-10-26 | 113d | 0d | SIC- Cost; Electrical Forman [67.9 h]; Electrical Technician [67.9 h]; Electrical Helper [67.9 h] | 5,382.27 | Z G |
|  | 3 | **Install Manholes** |  | 2026-08-19 | 2026-11-01 |  |  |  |  |  |  |  |  |  |  |
| SDR-2-CON-TE-ZA-4510 |  | Installation of Telecom Manhole | 20d | 2026-08-19 A | 2026-11-01 | SDR-2-CON-TE-ZA-4500 FF, SDR-2-CON-TE-ZA-4550 FF | 75% | 1d | 2026-10-27 | 2026-11-18 | 113d | 0d | SIC- Cost; Electrical Forman [67.9 h]; Electrical Technician [67.9 h]; Electrical Helper [67.9 h] | 24,220.18 | Z G |
|  | 4 | **Testting** |  | 2026-11-02 | 2026-11-09 |  |  |  |  |  |  |  |  |  |  |
| SDR-2-CON-TE-ZA-4520 |  | Telecom Manhole finishing works | 7d | 2026-11-02 | 2026-11-09 | SDR-2-CON-TE-ZA-4510 |  |  |  |  | 113d | 0d | SIC- Cost; Electrical Forman [67.9 h]; Electrical Technician [67.9 h]; Electrical Helper [67.9 h] | 5,382.27 | Z G |
|  | 5 | **Backfilling** |  | 2026-11-22 | 2026-12-15 |  |  |  |  |  |  |  |  |  |  |
| SDR-2-CON-TE-ZA-4530 |  | Backfilling over Telecom Manhole | 21d | 2026-11-22 | 2026-12-15 | SDR-2-CON-TE-ZA-4520 FS+10d |  |  |  |  | 113d | 108d | SIC- Cost; Electrical Forman [67.9 h]; Electrical Technician [67.9 h]; Electrical Helper [67.9 h]; Excavator [5 h]; Excavator Operator [67.9 h] | 10,764.52 | Z G |

| ID | WBS | Activity | Duration | Start | Finish | Predecessors | Complete | Remaining | Planned start | Planned finish | Total float | Free float | Resources | Cost | ZONE A |
| --- | --- | --- | --- | --- | --- | --- | --- | --- | --- | --- | --- | --- | --- | --- | --- |
|  | LI | **Landscape & Irrigation Works** |  | 2026-08-01 | 2027-07-04 |  |  |  |  |  |  |  |  |  |  |
|  | ZA | **ZONE A** |  | 2026-08-01 | 2027-07-04 |  |  |  |  |  |  |  |  |  |  |
|  | 2 | **IRRIGATION WORKS** |  | 2026-08-01 | 2027-07-04 |  |  |  |  |  |  |  |  |  |  |
|  | 1 | **IRRIGATION WORKS IN ( PH2-COL-MC10 )** |  | 2026-08-01 | 2027-07-03 |  |  |  |  |  |  |  |  |  |  |
|  | 7 | **Pre install** |  | 2026-08-01 | 2027-05-11 |  |  |  |  |  |  |  |  |  |  |
| SDR-2-CON-IR-ZA-1000 |  | Pre Install for irrigation Works | 19d | 2026-08-01 A | 2027-05-11 | SDR-2-CON-SE-ZA-1490, SDR-2-CON-SE-ZA-1550, SDR-2-CON-SE-ZA-1560, SDR-2-CON-SE-ZA-1620, SDR-2-CON-SE-ZA-1590, SDR-2-CON-SE-ZA-1650, SDR-2-CON-SE-ZA-1660, SDR-2-CON-SE-ZA-1720, SDR-2-CON-SE-ZA-1690, SDR-2-CON-SE-ZA-1750, SDR-2-CON-SE-ZA-1760, SDR-2-CON-SE-ZA-1820, SDR-2-CON-SE-ZA-1790, SDR-2-CON-SE-ZA-1850, SDR-2-CON-SE-ZA-1860, SDR-2-CON-SE-ZA-1920, SDR-2-CON-SE-ZA-1890, SDR-2-CON-SE-ZA-1950, SDR-2-CON-SE-ZA-1960, SDR-2-CON-SE-ZA-2020, SDR-2-CON-SE-ZA-1990, SDR-2-CON-SE-ZA-2050, SDR-2-CON-SE-ZA-2060, SDR-2-CON-SE-ZA-2120, SDR-2-CON-SE-ZA-2070, SDR-2-CON-SE-ZA-2080, SDR-2-CON-SE-ZA-2130, SDR-2-CON-SE-ZA-2090, SDR-2-CON-SE-ZA-2150, SDR-2-CON-SE-ZA-2100, SDR-2-CON-SE-ZA-2140, SDR-2-CON-SE-ZA-2160, SDR-2-CON-SE-ZA-2220, SDR-2-CON-SE-ZA-2170, SDR-2-CON-SE-ZA-2230, SDR-2-CON-SE-ZA-2190, SDR-2-CON-SE-ZA-2250, SDR-2-CON-SE-ZA-2200, SDR-2-CON-SE-ZA-2240, SDR-2-CON-SE-ZA-2260, SDR-2-CON-SE-ZA-2320, SDR-2-CON-SE-ZA-2270, SDR-2-CON-SE-ZA-2280, SDR-2-CON-SE-ZA-2330, SDR-2-CON-SE-ZA-2290, SDR-2-CON-SE-ZA-2350, SDR-2-CON-SE-ZA-2300, SDR-2-CON-SE-ZA-2340, SDR-2-CON-SE-ZA-2360, SDR-2-CON-SE-ZA-2420, SDR-2-CON-SE-ZA-2370, SDR-2-CON-SE-ZA-2380, SDR-2-CON-SE-ZA-2430, SDR-2-CON-SE-ZA-2390, SDR-2-CON-SE-ZA-2450, SDR-2-CON-SE-ZA-2400, SDR-2-CON-SE-ZA-2440, SDR-2-CON-PW-ZG-1000, SDR-2-CON-PW-ZA-2910, SDR-2-CON-PW-ZA-3010, SDR-2-CON-PW-ZA-3020, SDR-2-CON-PW-ZA-3110, SDR-2-CON-PW-ZA-3120, SDR-2-CON-PW-ZA-2560, SDR-2-CON-TE-ZA-4290, SDR-2-CON-RW-ZA-1720, SDR-2-CON-RW-ZA-1720 FF, SDR-2-CON-ST-ZA-6120, SDR-2-CON-SE-ZA-1010 FF, SDR-2-CON-SE-ZA-1020 FF, SDR-2-CON-SE-ZA-1040 FF, SDR-2-CON-SE-ZA-1050 FF, SDR-2-CON-SE-ZA-1470 FF, SDR-2-CON-SE-ZA-1480 FF, SDR-2-CON-SE-ZA-1500 FF, SDR-2-CON-SE-ZA-1510 FF, SDR-2-CON-SE-ZA-1570 FF, SDR-2-CON-SE-ZA-1580 FF, SDR-2-CON-SE-ZA-1600 FF, SDR-2-CON-SE-ZA-1610 FF, SDR-2-CON-SE-ZA-1670 FF, SDR-2-CON-SE-ZA-1680 FF, SDR-2-CON-SE-ZA-1700 FF, SDR-2-CON-SE-ZA-1710 FF, SDR-2-CON-SE-ZA-1770 FF, SDR-2-CON-SE-ZA-1780 FF, SDR-2-CON-SE-ZA-1800 FF, SDR-2-CON-SE-ZA-1810 FF, SDR-2-CON-SE-ZA-1870 FF, SDR-2-CON-SE-ZA-1880 FF, SDR-2-CON-SE-ZA-1900 FF, SDR-2-CON-SE-ZA-1910 FF, SDR-2-CON-SE-ZA-1970 FF, SDR-2-CON-SE-ZA-2000 FF, SDR-2-CON-SE-ZA-2110 FF, SDR-2-CON-SE-ZA-2180 FF, SDR-2-CON-SE-ZA-2210 FF, SDR-2-CON-SE-ZA-2310 FF, SDR-2-CON-SE-ZA-2410 FF, SDR-2-CON-TS-ZA-3100 FF, SDR-2-CON-TS-ZA-3130 FF, SDR-2-CON-TS-ZA-3110 FF, SDR-2-CON-TS-ZA-3120 FF, SDR-2-CON-TS-ZA-3140 FF, SDR-2-CON-TS-ZA-2300 FF, SDR-2-CON-TS-ZA-2380 FF, SDR-2-CON-TS-ZA-2310 FF, SDR-2-CON-TS-ZA-2400 FF, SDR-2-CON-TS-ZA-2900 FF, SDR-2-CON-TS-ZA-3000 FF, SDR-2-CON-TS-ZA-2500 FF, SDR-2-CON-PW-ZA-1000 FF, SDR-2-CON-PW-ZA-2200 FF, SDR-2-CON-PW-ZA-1010 FF, SDR-2-CON-PW-ZA-2260 FF, SDR-2-CON-PW-ZA-2340 FF, SDR-2-CON-PW-ZA-2270 FF, SDR-2-CON-PW-ZA-2330 FF, SDR-2-CON-PW-ZA-2350 FF, SDR-2-CON-PW-ZG-1500 FF, SDR-2-CON-PW-ZG-1010 FF, SDR-2-CON-PW-ZA-2940 FF, SDR-2-CON-PW-ZA-2920 FF, SDR-2-CON-PW-ZA-3040 FF, SDR-2-CON-PW-ZA-3140 FF, SDR-2-CON-PW-ZA-2640 FF, SDR-2-CON-PW-ZA-2570 FF, SDR-2-CON-SL-ZA-2870 FF, SDR-2-CON-SL-ZA-2880 FF, SDR-2-CON-SL-ZA-1300 FF, SDR-2-CON-SL-ZA-1310 FF, SDR-2-CON-SL-ZA-2950 FF, SDR-2-CON-SL-ZA-2960 FF, SDR-2-CON-SL-ZA-2990 FF, SDR-2-CON-SL-ZA-3000 FF, SDR-2-CON-SL-ZA-3030 FF, SDR-2-CON-SL-ZA-3040 FF, SDR-2-CON-SL-ZA-3070 FF, SDR-2-CON-SL-ZA-3080 FF, SDR-2-CON-SL-ZA-3110 FF, SDR-2-CON-SL-ZA-3120 FF, SDR-2-CON-SL-ZA-3150 FF, SDR-2-CON-SL-ZA-3160 FF, SDR-2-CON-SL-ZA-3190 FF, SDR-2-CON-SL-ZA-3200 FF, SDR-2-CON-SL-ZA-2910 FF, SDR-2-CON-SL-ZA-2920 FF, SDR-2-CON-MV-ZA-1000 FF, SDR-2-CON-MV-ZA-1070 FF, SDR-2-CON-MV-ZA-1150 FF, SDR-2-CON-MV-ZA-1160 FF, SDR-2-CON-MV-ZA-1170 FF, SDR-2-CON-MV-ZA-1200 FF, SDR-2-CON-MV-ZA-1210 FF, SDR-2-CON-MV-ZA-1240 FF, SDR-2-CON-MV-ZA-1250 FF, SDR-2-CON-TE-ZA-1030 FF, SDR-2-CON-TE-ZA-3220 FF, SDR-2-CON-TE-ZA-3230 FF, SDR-2-CON-TE-ZA-3240 FF, SDR-2-CON-TE-ZA-3290 FF, SDR-2-CON-TE-ZA-3250 FF, SDR-2-CON-TE-ZA-3330 FF, SDR-2-CON-TE-ZA-3490 FF, SDR-2-CON-TE-ZA-3510 FF, SDR-2-CON-TE-ZA-3560 FF, SDR-2-CON-TE-ZA-3570 FF, SDR-2-CON-TE-ZA-3580 FF, SDR-2-CON-TE-ZA-3600 FF, SDR-2-CON-TE-ZA-3650 FF, SDR-2-CON-TE-ZA-3660 FF, SDR-2-CON-TE-ZA-3670 FF, SDR-2-CON-TE-ZA-3750 FF, SDR-2-CON-TE-ZA-3760 FF, SDR-2-CON-TE-ZA-3840 FF, SDR-2-CON-TE-ZA-3850 FF, SDR-2-CON-TE-ZA-3930 FF, SDR-2-CON-TE-ZA-4020 FF, SDR-2-CON-TE-ZA-4110 FF, SDR-2-CON-TE-ZA-4120 FF, SDR-2-CON-TE-ZA-4140 FF, SDR-2-CON-TE-ZA-4190 FF, SDR-2-CON-TE-ZA-4150 FF, SDR-2-CON-SL-ZA-3230 FF, SDR-2-CON-SL-ZA-3240 FF, SDR-2-CON-SL-ZA-3270 FF, SDR-2-CON-SL-ZA-3280 FF, SDR-2-CON-SL-ZA-3310 FF, SDR-2-CON-SL-ZA-3320 FF, SDR-2-CON-SL-ZA-3350 FF, SDR-2-CON-SL-ZA-3360 FF, SDR-2-CON-SL-ZA-3390 FF, SDR-2-CON-SL-ZA-3400 FF, SDR-2-CON-SL-ZA-3420 FF, SDR-2-CON-SL-ZA-3410 FF, SDR-2-CON-MV-ZA-1280 FF, SDR-2-CON-MV-ZA-1290 FF, SDR-2-CON-MV-ZA-1310 FF, SDR-2-CON-MV-ZA-1320 FF, SDR-2-CON-MV-ZA-1330 FF, SDR-2-CON-MV-ZA-1350 FF, SDR-2-CON-TE-ZA-4200 FF, SDR-2-CON-TE-ZA-4210 FF, SDR-2-CON-TE-ZA-4230 FF, SDR-2-CON-TE-ZA-4280 FF, SDR-2-CON-TE-ZA-4240 FF, SDR-2-CON-TE-ZA-4250 FF, SDR-2-CON-TE-ZA-4300 FF, SDR-2-CON-TE-ZA-4310 FF, SDR-2-CON-TE-ZA-4360 FF, SDR-2-CON-TE-ZA-4320 FF, SDR-2-CON-TE-ZA-4370 FF, SDR-2-CON-TE-ZA-4330 FF, SDR-2-CON-TE-ZA-4380 FF, SDR-2-CON-TE-ZA-4390 FF, SDR-2-CON-TE-ZA-4400 FF, SDR-2-CON-TE-ZA-4450 FF, SDR-2-CON-TE-ZA-4410 FF, SDR-2-CON-TE-ZA-4460 FF, SDR-2-CON-TE-ZA-4420 FF, SDR-2-CON-TE-ZA-4470 FF, SDR-2-CON-TE-ZA-4480 FF, SDR-2-CON-TE-ZA-4490 FF, SDR-2-CON-TE-ZA-4540 FF, SDR-2-CON-TE-ZA-4500 FF, SDR-2-CON-TE-ZA-4550 FF, SDR-2-CON-TE-ZA-4510 FF, SDR-2-CON-CC-ZA-1000 FF, SDR-2-CON-CC-ZA-1090 FF, SDR-2-CON-CC-ZA-1250 FF, SDR-2-CON-CC-ZA-1390 FF, SDR-2-CON-CC-ZA-1670 FF, SDR-2-CON-CC-ZA-1700 FF, SDR-2-CON-CC-ZA-1750 FF, SDR-2-CON-CC-ZA-1790 FF, SDR-2-CON-CC-ZA-1830 FF, SDR-2-CON-ST-ZA-4020 FF, SDR-2-CON-SE-ZA-1430 FF, SDR-2-CON-SE-ZA-1440 FF, SDR-2-CON-SE-ZA-1530 FF, SDR-2-CON-SE-ZA-1540 FF, SDR-2-CON-SE-ZA-1630 FF, SDR-2-CON-SE-ZA-1730 FF, SDR-2-CON-SE-ZA-1740 FF, SDR-2-CON-SE-ZA-1830 FF, SDR-2-CON-SE-ZA-1840 FF, SDR-2-CON-SE-ZA-1930 FF, SDR-2-CON-SE-ZA-1940 FF, SDR-2-CON-SE-ZA-1980 FF, SDR-2-CON-SE-ZA-2030 FF, SDR-2-CON-SE-ZA-2010 FF, SDR-2-CON-SE-ZA-2040 FF, SDR-2-CON-TS-ZA-1900 FF, SDR-2-CON-TS-ZA-1010 FF, SDR-2-CON-TS-ZA-1080 FF, SDR-2-CON-TS-ZA-1910 FF, SDR-2-CON-TS-ZA-1040 FF, SDR-2-CON-TS-ZA-1020 FF, SDR-2-CON-TS-ZA-1050 FF, SDR-2-CON-TS-ZA-1060 FF, SDR-2-CON-TS-ZA-1070 FF, SDR-2-CON-TS-ZA-2200 FF, SDR-2-CON-TS-ZA-2280 FF, SDR-2-CON-TS-ZA-2210 FF, SDR-2-CON-TS-ZA-2270 FF, SDR-2-CON-TS-ZA-2290 FF, SDR-2-CON-TS-ZA-2230 FF, SDR-2-CON-TS-ZA-2240 FF, SDR-2-CON-TS-ZA-2250 FF, SDR-2-CON-TS-ZA-2260 FF, SDR-2-CON-TS-ZA-1180 FF, SDR-2-CON-TS-ZA-1920 FF, SDR-2-CON-TS-ZA-1190 FF, SDR-2-CON-TS-ZA-1260 FF, SDR-2-CON-TS-ZA-1930 FF, SDR-2-CON-TS-ZA-2010 FF, SDR-2-CON-TS-ZA-2000 FF, SDR-2-CON-TS-ZA-2020 FF, SDR-2-CON-TS-ZA-2030 FF, SDR-2-CON-TS-ZA-2040 FF, SDR-2-CON-TS-ZA-1270 FF, SDR-2-CON-TS-ZA-1940 FF, SDR-2-CON-TS-ZA-1280 FF, SDR-2-CON-TS-ZA-1350 FF, SDR-2-CON-TS-ZA-1950 FF, SDR-2-CON-TS-ZA-2060 FF, SDR-2-CON-TS-ZA-2050 FF, SDR-2-CON-TS-ZA-2660 FF, SDR-2-CON-TS-ZA-2650 FF, SDR-2-CON-TS-ZA-2670 FF, SDR-2-CON-TS-ZA-2680 FF, SDR-2-CON-TS-ZA-2690 FF, SDR-2-CON-TS-ZA-2700 FF, SDR-2-CON-TS-ZA-2730 FF, SDR-2-CON-TS-ZA-2710 FF, SDR-2-CON-TS-ZA-2720 FF, SDR-2-CON-TS-ZA-2740 FF, SDR-2-CON-TS-ZA-2760 FF, SDR-2-CON-TS-ZA-2750 FF, SDR-2-CON-TS-ZA-2770 FF, SDR-2-CON-TS-ZA-2780 FF, SDR-2-CON-TS-ZA-2800 FF, SDR-2-CON-TS-ZA-2830 FF, SDR-2-CON-TS-ZA-2810 FF, SDR-2-CON-TS-ZA-2820 FF, SDR-2-CON-TS-ZA-2840 FF, SDR-2-CON-TS-ZA-2860 FF, SDR-2-CON-TS-ZA-2850 FF, SDR-2-CON-TS-ZA-2870 FF, SDR-2-CON-TS-ZA-2880 FF, SDR-2-CON-TS-ZA-2890 FF, SDR-2-CON-TS-ZA-1630 FF, SDR-2-CON-TS-ZA-1960 FF, SDR-2-CON-TS-ZA-1640 FF, SDR-2-CON-TS-ZA-1710 FF, SDR-2-CON-TS-ZA-1970 FF, SDR-2-CON-TS-ZA-2110 FF, SDR-2-CON-TS-ZA-2100 FF, SDR-2-CON-TS-ZA-2120 FF, SDR-2-CON-TS-ZA-2130 FF, SDR-2-CON-TS-ZA-2140 FF, SDR-2-CON-TS-ZA-1720 FF, SDR-2-CON-TS-ZA-1980 FF, SDR-2-CON-TS-ZA-1730 FF, SDR-2-CON-TS-ZA-1800 FF, SDR-2-CON-TS-ZA-1990 FF, SDR-2-CON-TS-ZA-2160 FF, SDR-2-CON-TS-ZA-2150 FF, SDR-2-CON-TS-ZA-2170 FF, SDR-2-CON-TS-ZA-2180 FF, SDR-2-CON-TS-ZA-2190 FF, SDR-2-CON-TS-ZA-3160 FF, SDR-2-CON-TS-ZA-3150 FF, SDR-2-CON-TS-ZA-3170 FF, SDR-2-CON-TS-ZA-3180 FF, SDR-2-CON-TS-ZA-3190 FF, SDR-2-CON-TS-ZA-2370 FF, SDR-2-CON-TS-ZA-2390 FF, SDR-2-CON-TS-ZA-2330 FF, SDR-2-CON-TS-ZA-2320 FF, SDR-2-CON-TS-ZA-2340 FF, SDR-2-CON-TS-ZA-2350 FF, SDR-2-CON-TS-ZA-2360 FF, SDR-2-CON-TS-ZA-2430 FF, SDR-2-CON-TS-ZA-2410 FF, SDR-2-CON-TS-ZA-2420 FF, SDR-2-CON-TS-ZA-2440 FF, SDR-2-CON-TS-ZA-2460 FF, SDR-2-CON-TS-ZA-2450 FF, SDR-2-CON-TS-ZA-2930 FF, SDR-2-CON-TS-ZA-2910 FF, SDR-2-CON-TS-ZA-2920 FF, SDR-2-CON-TS-ZA-2940 FF, SDR-2-CON-TS-ZA-2960 FF, SDR-2-CON-TS-ZA-3030 FF, SDR-2-CON-TS-ZA-3010 FF, SDR-2-CON-TS-ZA-3020 FF, SDR-2-CON-TS-ZA-3040 FF, SDR-2-CON-TS-ZA-3060 FF, SDR-2-CON-TS-ZA-3050 FF, SDR-2-CON-TS-ZA-2510 FF, SDR-2-CON-TS-ZA-2520 FF, SDR-2-CON-TS-ZA-2560 FF, SDR-2-CON-TS-ZA-2550 FF, SDR-2-CON-TS-ZA-2570 FF, SDR-2-CON-TS-ZA-2580 FF, SDR-2-CON-TS-ZA-2590 FF, SDR-2-CON-PW-ZA-1080 FF, SDR-2-CON-PW-ZA-2210 FF, SDR-2-CON-PW-ZA-1040 FF, SDR-2-CON-PW-ZA-1020 FF, SDR-2-CON-PW-ZA-1050 FF, SDR-2-CON-PW-ZA-2300 FF, SDR-2-CON-PW-ZA-2280 FF, SDR-2-CON-PW-ZA-2310 FF, SDR-2-CON-PW-ZA-2290 FF, SDR-2-CON-PW-ZA-2680 FF, SDR-2-CON-PW-ZA-2660 FF, SDR-2-CON-PW-ZA-2690 FF, SDR-2-CON-PW-ZA-2670 FF, SDR-2-CON-PW-ZA-2710 FF, SDR-2-CON-PW-ZA-3260 FF, SDR-2-CON-PW-ZA-3290 FF, SDR-2-CON-PW-ZA-3270 FF, SDR-2-CON-PW-ZA-3280 FF, SDR-2-CON-PW-ZA-3360 FF, SDR-2-CON-PW-ZA-3390 FF, SDR-2-CON-PW-ZA-3370 FF, SDR-2-CON-PW-ZA-3380 FF, SDR-2-CON-PW-ZA-3400 FF, SDR-2-CON-PW-ZA-3460 FF, SDR-2-CON-PW-ZA-3490 FF, SDR-2-CON-PW-ZA-3470 FF, SDR-2-CON-PW-ZA-3480 FF, SDR-2-CON-PW-ZA-3500 FF, SDR-2-CON-PW-ZA-2810 FF, SDR-2-CON-PW-ZA-2840 FF, SDR-2-CON-PW-ZA-2820 FF, SDR-2-CON-PW-ZA-2830 FF, SDR-2-CON-PW-ZA-2880 FF, SDR-2-CON-PW-ZA-2860 FF, SDR-2-CON-PW-ZA-2890 FF, SDR-2-CON-PW-ZA-2870 FF, SDR-2-CON-PW-ZA-2360 FF, SDR-2-CON-PW-ZA-2440 FF, SDR-2-CON-PW-ZA-2370 FF, SDR-2-CON-PW-ZA-2430 FF, SDR-2-CON-PW-ZA-2450 FF, SDR-2-CON-PW-ZA-2460 FF, SDR-2-CON-PW-ZA-2540 FF, SDR-2-CON-PW-ZA-2470 FF, SDR-2-CON-PW-ZA-2530 FF, SDR-2-CON-PW-ZG-1080 FF, SDR-2-CON-PW-ZG-1510 FF, SDR-2-CON-PW-ZA-3680 FF, SDR-2-CON-PW-ZA-3660 FF, SDR-2-CON-PW-ZA-3690 FF, SDR-2-CON-PW-ZA-3670 FF, SDR-2-CON-PW-ZA-3700 FF, SDR-2-CON-PW-ZA-2930 FF, SDR-2-CON-PW-ZA-2950 FF, SDR-2-CON-PW-ZA-2980 FF, SDR-2-CON-PW-ZA-2960 FF, SDR-2-CON-PW-ZA-2990 FF, SDR-2-CON-PW-ZA-2970 FF, SDR-2-CON-PW-ZA-3030 FF, SDR-2-CON-PW-ZA-3050 FF, SDR-2-CON-PW-ZA-3080 FF, SDR-2-CON-PW-ZA-3060 FF, SDR-2-CON-PW-ZA-3090 FF, SDR-2-CON-PW-ZA-3070 FF, SDR-2-CON-PW-ZA-3100 FF, SDR-2-CON-PW-ZA-3130 FF, SDR-2-CON-PW-ZA-3150 FF, SDR-2-CON-PW-ZA-3180 FF, SDR-2-CON-PW-ZA-3160 FF, SDR-2-CON-PW-ZA-3190 FF, SDR-2-CON-PW-ZA-3170 FF, SDR-2-CON-PW-ZA-3200 FF, SDR-2-CON-PW-ZA-2630 FF, SDR-2-CON-PW-ZA-2650 FF, SDR-2-CON-PW-ZA-2600 FF, SDR-2-CON-PW-ZA-2580 FF, SDR-2-CON-PW-ZA-2610 FF, SDR-2-CON-PW-ZA-2590 FF, SDR-2-CON-PW-ZA-2620 FF, SDR-2-CON-SL-ZA-2900 FF, SDR-2-CON-SL-ZA-2890 FF, SDR-2-CON-SL-ZA-1410 FF, SDR-2-CON-SL-ZA-1400 FF, SDR-2-CON-SL-ZA-2980 FF, SDR-2-CON-SL-ZA-2970 FF, SDR-2-CON-SL-ZA-3020 FF, SDR-2-CON-SL-ZA-3010 FF, SDR-2-CON-SL-ZA-3060 FF, SDR-2-CON-SL-ZA-3050 FF, SDR-2-CON-SL-ZA-3100 FF, SDR-2-CON-SL-ZA-3090 FF, SDR-2-CON-SL-ZA-3140 FF, SDR-2-CON-SL-ZA-3130 FF, SDR-2-CON-SL-ZA-3180 FF, SDR-2-CON-SL-ZA-3170 FF, SDR-2-CON-SL-ZA-3220 FF, SDR-2-CON-SL-ZA-3210 FF, SDR-2-CON-SL-ZA-2940 FF, SDR-2-CON-SL-ZA-2930 FF, SDR-2-CON-SL-ZA-2650 FF, SDR-2-CON-SL-ZA-2660 FF, SDR-2-CON-SL-ZA-2800 FF, SDR-2-CON-SL-ZA-2670 FF, SDR-2-CON-SL-ZA-2810 FF, SDR-2-CON-SL-ZA-2820 FF, SDR-2-CON-SL-ZA-2830 FF, SDR-2-CON-SL-ZA-2840 FF, SDR-2-CON-SL-ZA-2850 FF, SDR-2-CON-SL-ZA-2860 FF, SDR-2-CON-MV-ZA-1100 FF, SDR-2-CON-MV-ZA-1190 FF, SDR-2-CON-MV-ZA-1180 FF, SDR-2-CON-MV-ZA-1230 FF, SDR-2-CON-MV-ZA-1220 FF, SDR-2-CON-MV-ZA-1270 FF, SDR-2-CON-MV-ZA-1260 FF, SDR-2-CON-TE-ZA-3280 FF, SDR-2-CON-TE-ZA-3260 FF, SDR-2-CON-TE-ZA-3270 FF, SDR-2-CON-TE-ZA-3310 FF, SDR-2-CON-TE-ZA-3320 FF, SDR-2-CON-TE-ZA-3370 FF, SDR-2-CON-TE-ZA-3380 FF, SDR-2-CON-TE-ZA-3340 FF, SDR-2-CON-TE-ZA-3350 FF, SDR-2-CON-TE-ZA-3360 FF, SDR-2-CON-TE-ZA-3500 FF, SDR-2-CON-TE-ZA-3550 FF, SDR-2-CON-TE-ZA-3520 FF, SDR-2-CON-TE-ZA-3530 FF, SDR-2-CON-TE-ZA-3540 FF, SDR-2-CON-TE-ZA-3590 FF, SDR-2-CON-TE-ZA-3640 FF, SDR-2-CON-TE-ZA-3610 FF, SDR-2-CON-TE-ZA-3620 FF, SDR-2-CON-TE-ZA-3630 FF, SDR-2-CON-TE-ZA-3680 FF, SDR-2-CON-TE-ZA-3730 FF, SDR-2-CON-TE-ZA-3690 FF, SDR-2-CON-TE-ZA-3740 FF, SDR-2-CON-TE-ZA-3700 FF, SDR-2-CON-TE-ZA-3710 FF, SDR-2-CON-TE-ZA-3720 FF, SDR-2-CON-TE-ZA-3770 FF, SDR-2-CON-TE-ZA-3820 FF, SDR-2-CON-TE-ZA-3780 FF, SDR-2-CON-TE-ZA-3830 FF, SDR-2-CON-TE-ZA-3790 FF, SDR-2-CON-TE-ZA-3800 FF, SDR-2-CON-TE-ZA-3810 FF, SDR-2-CON-TE-ZA-3860 FF, SDR-2-CON-TE-ZA-3910 FF, SDR-2-CON-TE-ZA-3870 FF, SDR-2-CON-TE-ZA-3920 FF, SDR-2-CON-TE-ZA-3880 FF, SDR-2-CON-TE-ZA-3890 FF, SDR-2-CON-TE-ZA-3900 FF, SDR-2-CON-TE-ZA-3940 FF, SDR-2-CON-TE-ZA-3950 FF, SDR-2-CON-TE-ZA-4000 FF, SDR-2-CON-TE-ZA-3960 FF, SDR-2-CON-TE-ZA-4010 FF, SDR-2-CON-TE-ZA-3970 FF, SDR-2-CON-TE-ZA-3980 FF, SDR-2-CON-TE-ZA-3990 FF, SDR-2-CON-TE-ZA-4030 FF, SDR-2-CON-TE-ZA-4040 FF, SDR-2-CON-TE-ZA-4090 FF, SDR-2-CON-TE-ZA-4050 FF, SDR-2-CON-TE-ZA-4100 FF, SDR-2-CON-TE-ZA-4060 FF, SDR-2-CON-TE-ZA-4070 FF, SDR-2-CON-TE-ZA-4080 FF, SDR-2-CON-TE-ZA-4130 FF, SDR-2-CON-TE-ZA-4180 FF, SDR-2-CON-TE-ZA-4160 FF, SDR-2-CON-TE-ZA-4170 FF, SDR-2-CON-SL-ZA-3260 FF, SDR-2-CON-SL-ZA-3250 FF, SDR-2-CON-SL-ZA-3300 FF, SDR-2-CON-SL-ZA-3290 FF, SDR-2-CON-SL-ZA-3340 FF, SDR-2-CON-SL-ZA-3330 FF, SDR-2-CON-SL-ZA-3380 FF, SDR-2-CON-SL-ZA-3370 FF, SDR-2-CON-SL-ZA-3430 FF, SDR-2-CON-SL-ZA-3440 FF, SDR-2-CON-SL-ZA-3450 FF, SDR-2-CON-SL-ZA-3460 FF, SDR-2-CON-SL-ZA-3470 FF, SDR-2-CON-SL-ZA-3480 FF, SDR-2-CON-SL-ZA-3490 FF, SDR-2-CON-SL-ZA-3500 FF, SDR-2-CON-SL-ZA-3510 FF, SDR-2-CON-SL-ZA-3520 FF, SDR-2-CON-SL-ZA-3530 FF, SDR-2-CON-SL-ZA-3540 FF, SDR-2-CON-SL-ZA-3550 FF, SDR-2-CON-MV-ZA-1300 FF, SDR-2-CON-MV-ZA-1340 FF, SDR-2-CON-TE-ZA-4220 FF, SDR-2-CON-TE-ZA-4270 FF, SDR-2-CON-TE-ZA-4260 FF, SDR-2-CON-TE-ZA-4340 FF, SDR-2-CON-TE-ZA-4350 FF, SDR-2-CON-TE-ZA-4430 FF, SDR-2-CON-TE-ZA-4440 FF, SDR-2-CON-TE-ZA-4520 FF, SDR-2-CON-TE-ZA-4530 FF, SDR-2-CON-CC-ZA-1260 FF, SDR-2-CON-CC-ZA-1270 FF, SDR-2-CON-CC-ZA-1620 FF, SDR-2-CON-CC-ZA-1630 FF, SDR-2-CON-CC-ZA-1640 FF, SDR-2-CON-CC-ZA-1650 FF, SDR-2-CON-CC-ZA-1660 FF, SDR-2-CON-CC-ZA-1720 FF, SDR-2-CON-CC-ZA-1730 FF, SDR-2-CON-CC-ZA-1760 FF, SDR-2-CON-CC-ZA-1770 FF, SDR-2-CON-CC-ZA-1780 FF, SDR-2-CON-CC-ZA-1800 FF, SDR-2-CON-CC-ZA-1810 FF, SDR-2-CON-CC-ZA-1820 FF, SDR-2-CON-CC-ZA-1840 FF, SDR-2-CON-CC-ZA-1850 FF, SDR-2-CON-CC-ZA-1860 FF, SDR-2-CON-CC-ZG-1500 FF, SDR-2-CON-CC-ZG-1540 FF, SDR-2-CON-CC-ZG-1550 FF, SDR-2-CON-CC-ZG-1510 FF, SDR-2-CON-CC-ZG-1560 FF, SDR-2-CON-CC-ZG-1570 FF, SDR-2-CON-CC-ZG-1580 FF, SDR-2-CON-CC-ZG-1520 FF, SDR-2-CON-CC-ZG-1590 FF, SDR-2-CON-CC-ZG-1530 FF, SDR-2-CON-CC-ZG-1600 FF, SDR-2-CON-CC-ZG-1610 FF, SDR-2-CON-CC-ZG-1620 FF, SDR-2-CON-CC-ZG-1630 FF, SDR-2-CON-CC-ZG-1640 FF, SDR-2-CON-CC-ZG-1650 FF, SDR-2-MILS-1050 FF, SDR-2-CON-ST-ZA-5970 FF, SDR-2-CON-SE-ZA-1000, SDR-2-CON-SE-ZA-1420, SDR-2-CON-SE-ZA-1030, SDR-2-CON-SE-ZA-1450, SDR-2-CON-SE-ZA-1460, SDR-2-CON-SE-ZA-1520 | 15% | 1d | 2027-05-08 | 2027-06-03 | 0d |  | SIC- Cost [8286.74]; Loader [200 h]; Labor [1086.35 h]; Landscape Crew [1086.35 h]; Dumper Operator [1086.35 h]; Dumper Truck [800 h]; Grader [250 h] | 31,068.91 | Z A |
|  | 8 | **install** |  | 2027-06-19 | 2027-07-03 |  |  |  |  |  |  |  |  |  |  |
| SDR-2-CON-IR-ZA-1010 |  | Installation of HDPE Pipe | 13d | 2027-06-19 | 2027-07-03 | SDR-2-TC-PW-1050 SS, SDR-2-CON-PW-ZA-3500, SDR-2-CON-PW-ZA-3600, SDR-2-CON-PW-ZA-2850, SDR-2-CON-PW-ZA-2450, SDR-2-CON-PW-ZG-1510, SDR-2-CON-PW-ZA-2950, SDR-2-CON-PW-ZA-3050, SDR-2-CON-PW-ZA-3150, SDR-2-CON-IR-ZA-1000 |  |  |  |  | 2d | 0d | SIC- Cost [38671.4]; Labor [271.59 h]; Landscape Crew [271.59 h]; Dumper Truck [150 h]; Grader [60 h] | 51,781.52 | Z A |
|  | 9 | **Finishing** |  | 2027-06-21 | 2027-07-01 |  |  |  |  |  |  |  |  |  |  |
| SDR-2-CON-IR-ZA-1020 |  | Finishing Works for irrigation | 10d | 2027-06-21 | 2027-07-01 | SDR-2-CON-IR-ZA-1010 SS+2d |  |  |  |  | 3d | 0d | SIC- Cost [15211.8]; Excavator [200 h]; Labor [95.54 h]; Landscape Crew [191.07 h]; Dumper Truck [40 h]; Grader [60 h] | 10,356.3 | Z A |
|  | 10 | **Repairs** |  | 2027-06-21 | 2027-06-24 |  |  |  |  |  |  |  |  |  |  |
| SDR-2-CON-IR-ZA-1030 |  | Repair for irrigation Works | 4d | 2027-06-21 | 2027-06-24 | SDR-2-CON-IR-ZA-1020 SS |  |  |  |  | 9d |  | SIC- Cost [200]; Labor [95.54 h]; Landscape Crew [95.54 h]; Dumper Truck [288.12 h]; Grader [50 h] | 10,356.3 | Z A |
|  | 2 | **IRRIGATION WORKS IN ( PH2-COL-MC20 )** |  | 2027-05-11 | 2027-06-27 |  |  |  |  |  |  |  |  |  |  |
|  | 7 | **Pre install** |  | 2027-05-11 | 2027-06-08 |  |  |  |  |  |  |  |  |  |  |
| SDR-2-CON-IR-ZA-2120 |  | Pre Install for irrigation Works | 20d | 2027-05-11 | 2027-06-08 | SDR-2-CON-IR-ZA-1000 SS, SDR-2-CON-ST-ZA-4020 |  |  |  |  | 6d | 0d | SIC- Cost [8286.74]; Dump Truck [200 h]; Excavator Operator [1086.35 h]; Loader [100 h]; Labor [1086.35 h]; Landscape Crew [1086.35 h]; Grader [80 h] | 31,068.91 | Z A |
|  | 8 | **install** |  | 2027-05-29 | 2027-06-10 |  |  |  |  |  |  |  |  |  |  |
| SDR-2-CON-IR-ZA-2130 |  | Installation of HDPE Pipe | 12d | 2027-05-29 | 2027-06-10 | SDR-2-CON-IR-ZA-2120 SS+10d |  |  |  |  | 6d | 0d | SIC- Cost [38671.4]; Dump Truck [130 h]; Excavator Operator [90.19 h]; Loader [130 h]; Labor [80.12 h]; Landscape Crew [1086.35 h]; Grader [60 h] | 51,781.52 | Z A |
|  | 9 | **Finishing** |  | 2027-06-12 | 2027-06-21 |  |  |  |  |  |  |  |  |  |  |
| SDR-2-CON-IR-ZA-2140 |  | Finishing Works for irrigation | 9d | 2027-06-12 | 2027-06-21 | SDR-2-CON-IR-ZA-2130 |  |  |  |  | 7d | 0d | SIC- Cost [15211.8]; Excavator [200 h]; Dump Truck [100 h]; Excavator Operator [25.6 h]; Loader [100 h]; Labor [25.6 h]; Landscape Crew [25.6 h]; Grader [40 h] | 10,356.3 | Z A |
|  | 10 | **Repairs** |  | 2027-06-22 | 2027-06-27 |  |  |  |  |  |  |  |  |  |  |
| SDR-2-CON-IR-ZA-2150 |  | Repair for irrigation Works | 5d | 2027-06-22 | 2027-06-27 | SDR-2-CON-IR-ZA-2140 |  |  |  |  | 7d |  | SIC- Cost [198.55]; Dump Truck [40 h]; Excavator Operator [38.41 h]; Loader [40 h]; Labor [38.41 h]; Landscape Crew [38.41 h]; Grader [60 h] | 10,356.3 | Z A |
|  | 11 | **IRRIGATION WORKS IN ( PH2-A-MCA0 )** |  | 2027-05-11 | 2027-06-27 |  |  |  |  |  |  |  |  |  |  |
|  | 7 | **Pre install** |  | 2027-05-11 | 2027-05-30 |  |  |  |  |  |  |  |  |  |  |
| SDR-2-CON-IR-ZA-2160 |  | Pre Install for irrigation Works | 12d | 2027-05-11 | 2027-05-30 | SDR-2-CON-IR-ZA-1000 SS, SDR-2-CON-ST-ZA-4920 |  |  |  |  | 0d |  | SIC- Cost [8286.74]; Excavator [412 h]; Dump Truck [200 h]; Excavator Operator [1086.35 h]; Loader [100 h]; Labor [1086.35 h]; Landscape Crew [1086.35 h]; Grader [80 h] | 31,068.91 | Z A |

| ID | WBS | Activity | Duration | Start | Finish | Predecessors | Complete | Remaining | Planned start | Planned finish | Total float | Free float | Resources | Cost | ZONE A |
| --- | --- | --- | --- | --- | --- | --- | --- | --- | --- | --- | --- | --- | --- | --- | --- |
|  | 8 | **install** |  | 2027-05-31 | 2027-06-14 |  |  |  |  |  |  |  |  |  |  |
| SDR-2-CON-IR-ZA-2170 |  | Installation of HDPE Pipe | 13d | 2027-05-31 | 2027-06-14 | SDR-2-CON-IR-ZA-2160 |  |  |  |  | 0d |  | SIC- Cost [38671.4]; Excavator [200 h]; Dump Truck [130 h]; Excavator Operator [90.19 h]; Loader [130 h]; Labor [80.12 h]; Landscape Crew [1086.35 h]; Grader [60 h] | 51,781.52 | Z A |
|  | 9 | **Finishing** |  | 2027-06-15 | 2027-06-24 |  |  |  |  |  |  |  |  |  |  |
| SDR-2-CON-IR-ZA-2180 |  | Finishing Works for irrigation | 9d | 2027-06-15 | 2027-06-24 | SDR-2-CON-IR-ZA-2170 |  |  |  |  | 0d |  | SIC- Cost [15211.8]; Dump Truck [100 h]; Excavator Operator [25.6 h]; Loader [100 h]; Labor [25.6 h]; Landscape Crew [25.6 h]; Grader [40 h] | 10,356.3 | Z A |
|  | 10 | **Repairs** |  | 2027-06-26 | 2027-06-27 |  |  |  |  |  |  |  |  |  |  |
| SDR-2-CON-IR-ZA-2190 |  | Repair for irrigation Works | 2d | 2027-06-26 | 2027-06-27 | SDR-2-CON-IR-ZA-2180 |  |  |  |  | 0d |  | SIC- Cost [198.55]; Dump Truck [40 h]; Excavator Operator [683.25 h]; Loader [40 h]; Labor [673.17 h]; Landscape Crew [1086.35 h]; Grader [60 h] | 10,356.3 | Z A |
|  | 12 | **IRRIGATION WORKS IN ( PH2-A-MCB0 )** |  | 2027-05-11 | 2027-07-01 |  |  |  |  |  |  |  |  |  |  |
|  | 7 | **Pre install** |  | 2027-05-11 | 2027-06-01 |  |  |  |  |  |  |  |  |  |  |
| SDR-2-CON-IR-ZA-2200 |  | Pre Install for irrigation Works | 14d | 2027-05-11 | 2027-06-01 | SDR-2-CON-IR-ZA-1000 SS, SDR-2-CON-ST-ZA-4020 |  |  |  |  | 3d | 0d | SIC- Cost [8286.74]; Dump Truck [200 h]; Excavator Operator [1086.35 h]; Loader [100 h]; Labor [1086.35 h]; Landscape Crew [1086.35 h]; Grader [80 h] | 31,068.91 | Z A |
|  | 8 | **install** |  | 2027-06-02 | 2027-06-15 |  |  |  |  |  |  |  |  |  |  |
| SDR-2-CON-IR-ZA-2210 |  | Installation of HDPE Pipe | 12d | 2027-06-02 | 2027-06-15 | SDR-2-CON-IR-ZA-2200, SDR-2-CON-ST-ZA-5970 |  |  |  |  | 3d | 0d | SIC- Cost [38671.4]; Excavator [200 h]; Dump Truck [130 h]; Excavator Operator [96.01 h]; Loader [130 h]; Labor [96.01 h]; Landscape Crew [96.01 h]; Grader [60 h] | 51,781.52 | Z A |
|  | 9 | **Finishing** |  | 2027-06-16 | 2027-06-24 |  |  |  |  |  |  |  |  |  |  |
| SDR-2-CON-IR-ZA-2220 |  | Finishing Works for irrigation | 8d | 2027-06-16 | 2027-06-24 | SDR-2-CON-IR-ZA-2210 |  |  |  |  | 3d | 0d | SIC- Cost [15211.8]; Dump Truck [100 h]; Excavator Operator [25.6 h]; Loader [100 h]; Labor [25.6 h]; Landscape Crew [25.6 h]; Grader [40 h] | 10,356.3 | Z A |
|  | 10 | **Repairs** |  | 2027-06-26 | 2027-07-01 |  |  |  |  |  |  |  |  |  |  |
| SDR-2-CON-IR-ZA-2230 |  | Repair for irrigation Works | 6d | 2027-06-26 | 2027-07-01 | SDR-2-CON-IR-ZA-2220 |  |  |  |  | 3d | 1.3d | SIC- Cost [198.55]; Dump Truck [40 h]; Excavator Operator [532.08 h]; Loader [40 h]; Labor [532.08 h]; Landscape Crew [1086.35 h]; Grader [60 h] | 10,356.3 | Z A |
|  | 3 | **IRRIGATION WORKS IN ( PH2-A-MCC0 )** |  | 2026-09-28 | 2027-06-30 |  |  |  |  |  |  |  |  |  |  |
|  | 7 | **Pre install** |  | 2026-09-28 | 2027-06-01 |  |  |  |  |  |  |  |  |  |  |
| SDR-2-CON-IR-ZA-2240 |  | Pre Install for irrigation Works | 14d | 2026-09-28 A | 2027-06-01 | SDR-2-CON-IR-ZA-1000 SS, SDR-2-CON-ST-ZA-4470 | 25% | 14d | 2027-05-08 | 2027-05-29 | 3d | 0d | SIC- Cost [8286.74]; Excavator [412 h]; Excavator Operator [1086.35 h]; Loader [46.4 h]; Labor [1086.35 h]; Landscape Crew [1086.35 h] | 31,068.91 | Z A |
|  | 8 | **install** |  | 2027-06-02 | 2027-06-16 |  |  |  |  |  |  |  |  |  |  |
| SDR-2-CON-IR-ZA-2250 |  | Installation of HDPE Pipe | 13d | 2027-06-02 | 2027-06-16 | SDR-2-CON-IR-ZA-2240 |  |  |  |  | 3d | 0d | SIC- Cost [38671.4]; Excavator Operator [96.01 h]; Labor [96.01 h]; Landscape Crew [96.01 h] | 51,781.52 | Z A |
|  | 9 | **Finishing** |  | 2027-06-17 | 2027-06-28 |  |  |  |  |  |  |  |  |  |  |
| SDR-2-CON-IR-ZA-2260 |  | Finishing Works for irrigation | 10d | 2027-06-17 | 2027-06-28 | SDR-2-CON-IR-ZA-2250 |  |  |  |  | 3d | 0d | SIC- Cost [15211.8]; Excavator Operator [25.6 h]; Labor [25.6 h]; Landscape Crew [25.6 h] | 10,356.3 | Z A |
|  | 10 | **Repairs** |  | 2027-06-29 | 2027-06-30 |  |  |  |  |  |  |  |  |  |  |
| SDR-2-CON-IR-ZA-2270 |  | Repair for irrigation Works | 2d | 2027-06-29 | 2027-06-30 | SDR-2-CON-IR-ZA-2260 |  |  |  |  | 3d | 1.3d | SIC- Cost [198.55]; Excavator Operator [38.41 h]; Labor [38.41 h]; Landscape Crew [38.41 h] | 10,356.3 | Z A |

| ID | WBS | Activity | Duration | Start | Finish | Predecessors | Complete | Remaining | Planned start | Planned finish | Total float | Free float | Resources | Cost | ZONE A |
| --- | --- | --- | --- | --- | --- | --- | --- | --- | --- | --- | --- | --- | --- | --- | --- |
|  | 4 | **IRRIGATION WORKS IN ( PH2-A-MCD0 )** |  | 2026-09-24 | 2027-06-17 |  |  |  |  |  |  |  |  |  |  |
|  | 7 | **Pre install** |  | 2026-09-24 | 2027-06-08 |  |  |  |  |  |  |  |  |  |  |
| SDR-2-CON-IR-ZA-2280 |  | Pre Install for irrigation Works | 20d | 2026-09-24 A | 2027-06-08 | SDR-2-CON-IR-ZA-1000 SS | 25% | 20d | 2027-05-06 | 2027-06-03 | 15d | 0d | SIC- Cost [8286.74]; Excavator Operator [1086.35 h]; Loader [52 h]; Labor [1086.35 h]; Landscape Crew [1086.35 h] | 31,068.91 | Z A |
|  | 8 | **install** |  | 2026-09-26 | 2027-06-08 |  |  |  |  |  |  |  |  |  |  |
| SDR-2-CON-IR-ZA-2290 |  | Installation of HDPE Pipe | 13d | 2026-09-26 A | 2027-06-08 | SDR-2-CON-IR-ZA-2280 FF | 25% | 13d | 2027-06-05 | 2027-06-19 | 15d | 0d | SIC- Cost [38671.4]; Excavator Operator [96.01 h]; Labor [96.01 h]; Landscape Crew [96.01 h] | 51,781.52 | Z A |
|  | 9 | **Finishing** |  | 2027-06-09 | 2027-06-13 |  |  |  |  |  |  |  |  |  |  |
| SDR-2-CON-IR-ZA-2300 |  | Finishing Works for irrigation | 4d | 2027-06-09 | 2027-06-13 | SDR-2-CON-IR-ZA-2290 |  |  |  |  | 15d | 0d | SIC- Cost [15211.8]; Excavator Operator [25.6 h]; Labor [25.6 h]; Landscape Crew [25.6 h] | 10,356.3 | Z A |
|  | 10 | **Repairs** |  | 2027-06-14 | 2027-06-17 |  |  |  |  |  |  |  |  |  |  |
| SDR-2-CON-IR-ZA-2310 |  | Repair for irrigation Works | 4d | 2027-06-14 | 2027-06-17 | SDR-2-CON-IR-ZA-2300 |  |  |  |  | 15d | 12.3d | SIC- Cost [198.55]; Excavator Operator [38.41 h]; Labor [38.41 h]; Landscape Crew [38.41 h] | 10,356.3 | Z A |
|  | 5 | **IRRIGATION WORKS IN ( PH2-A-MCE0 )** |  | 2026-09-28 | 2027-07-01 |  |  |  |  |  |  |  |  |  |  |
|  | 7 | **Pre install** |  | 2026-09-28 | 2027-06-01 |  |  |  |  |  |  |  |  |  |  |
| SDR-2-CON-IR-ZA-2320 |  | Pre Install for irrigation Works | 14d | 2026-09-28 A | 2027-06-01 | SDR-2-CON-IR-ZA-1000 SS, SDR-2-CON-ST-ZA-4320 | 25% | 14d | 2027-05-08 | 2027-05-29 | 3d | 0d | SIC- Cost [8286.74]; Excavator Operator [1086.35 h]; Loader [46.4 h]; Labor [1086.35 h]; Landscape Crew [1086.35 h] | 31,068.91 | Z A |
|  | 8 | **install** |  | 2026-10-01 | 2027-06-16 |  |  |  |  |  |  |  |  |  |  |
| SDR-2-CON-IR-ZA-2330 |  | Installation of HDPE Pipe | 13d | 2026-10-01 A | 2027-06-16 | SDR-2-CON-IR-ZA-2320 | 25% | 13d | 2027-05-30 | 2027-06-13 | 3d | 0d | SIC- Cost [38671.4]; Excavator Operator [96.01 h]; Labor [96.01 h]; Landscape Crew [96.01 h] | 51,781.52 | Z A |
|  | 9 | **Finishing** |  | 2027-06-17 | 2027-06-28 |  |  |  |  |  |  |  |  |  |  |
| SDR-2-CON-IR-ZA-2340 |  | Finishing Works for irrigation | 10d | 2027-06-17 | 2027-06-28 | SDR-2-CON-IR-ZA-2330 |  |  |  |  | 3d | 0d | SIC- Cost [15211.8]; Excavator Operator [25.6 h]; Labor [25.6 h]; Landscape Crew [25.6 h] | 10,356.3 | Z A |
|  | 10 | **Repairs** |  | 2027-06-29 | 2027-07-01 |  |  |  |  |  |  |  |  |  |  |
| SDR-2-CON-IR-ZA-2350 |  | Repair for irrigation Works | 3d | 2027-06-29 | 2027-07-01 | SDR-2-CON-IR-ZA-2340 |  |  |  |  | 3d | 0d | SIC- Cost [198.55]; Excavator Operator [38.41 h]; Labor [38.41 h]; Landscape Crew [38.41 h] | 10,356.3 | Z A |
|  | 6 | **IRRIGATION WORKS IN ( PH2-A-MCF0 )** |  | 2027-05-11 | 2027-07-01 |  |  |  |  |  |  |  |  |  |  |
|  | 7 | **Pre install** |  | 2027-05-11 | 2027-06-01 |  |  |  |  |  |  |  |  |  |  |
| SDR-2-CON-IR-ZA-2360 |  | Pre Install for irrigation Works | 14d | 2027-05-11 | 2027-06-01 | SDR-2-CON-IR-ZA-1000 SS, SDR-2-CON-ST-ZA-4470 |  |  |  |  | 3d | 0d | SIC- Cost [8286.74]; Excavator Operator [1086.35 h]; Loader [46.4 h]; Labor [1086.35 h]; Landscape Crew [1086.35 h] | 31,068.91 | Z A |
|  | 8 | **install** |  | 2027-06-02 | 2027-06-16 |  |  |  |  |  |  |  |  |  |  |
| SDR-2-CON-IR-ZA-2370 |  | Installation of HDPE Pipe | 13d | 2027-06-02 | 2027-06-16 | SDR-2-CON-IR-ZA-2360 |  |  |  |  | 3d | 0d | SIC- Cost [38671.4]; Excavator Operator [96.01 h]; Labor [96.01 h]; Landscape Crew [96.01 h] | 51,781.52 | Z A |
|  | 9 | **Finishing** |  | 2027-06-17 | 2027-06-28 |  |  |  |  |  |  |  |  |  |  |
| SDR-2-CON-IR-ZA-2380 |  | Finishing Works for irrigation | 10d | 2027-06-17 | 2027-06-28 | SDR-2-CON-IR-ZA-2370 |  |  |  |  | 3d | 0d | SIC- Cost [15211.8]; Excavator Operator [25.6 h]; Labor [25.6 h]; Landscape Crew [25.6 h] | 10,356.3 | Z A |

| ID | WBS | Activity | Duration | Start | Finish | Predecessors | Complete | Remaining | Planned start | Planned finish | Total float | Free float | Resources | Cost | ZONE A |
| --- | --- | --- | --- | --- | --- | --- | --- | --- | --- | --- | --- | --- | --- | --- | --- |
|  | 10 | **Repairs** |  | 2027-06-29 | 2027-07-01 |  |  |  |  |  |  |  |  |  |  |
| SDR-2-CON-IR-ZA-2390 |  | Repair for irrigation Works | 3d | 2027-06-29 | 2027-07-01 | SDR-2-CON-IR-ZA-2380 |  |  |  |  | 3d | 0d | SIC- Cost [198.55]; Excavator Operator [38.41 h]; Labor [38.41 h]; Landscape Crew [38.41 h] | 10,356.3 | Z A |
|  | 7 | **IRRIGATION WORKS IN ( PH2-A-MCG0 )** |  | 2027-05-11 | 2027-07-01 |  |  |  |  |  |  |  |  |  |  |
|  | 7 | **Pre install** |  | 2027-05-11 | 2027-06-01 |  |  |  |  |  |  |  |  |  |  |
| SDR-2-CON-IR-ZA-2400 |  | Pre Install for irrigation Works | 14d | 2027-05-11 | 2027-06-01 | SDR-2-CON-IR-ZA-1000 SS, SDR-2-CON-ST-ZA-4620 |  |  |  |  | 3d | 0d | SIC- Cost [8286.74]; Excavator Operator [1086.35 h]; Loader [46.4 h]; Labor [1086.35 h]; Landscape Crew [1086.35 h] | 31,068.91 | Z A |
|  | 8 | **install** |  | 2027-06-02 | 2027-06-16 |  |  |  |  |  |  |  |  |  |  |
| SDR-2-CON-IR-ZA-2410 |  | Installation of HDPE Pipe | 13d | 2027-06-02 | 2027-06-16 | SDR-2-CON-IR-ZA-2400 |  |  |  |  | 3d | 0d | SIC- Cost [38671.4]; Excavator Operator [96.01 h]; Labor [96.01 h]; Landscape Crew [96.01 h] | 51,781.52 | Z A |
|  | 9 | **Finishing** |  | 2027-06-17 | 2027-06-29 |  |  |  |  |  |  |  |  |  |  |
| SDR-2-CON-IR-ZA-2420 |  | Finishing Works for irrigation | 11d | 2027-06-17 | 2027-06-29 | SDR-2-CON-IR-ZA-2410 |  |  |  |  | 3d | 0d | SIC- Cost [15211.8]; Excavator Operator [25.6 h]; Labor [25.6 h]; Landscape Crew [25.6 h] | 10,356.3 | Z A |
|  | 10 | **Repairs** |  | 2027-06-30 | 2027-07-01 |  |  |  |  |  |  |  |  |  |  |
| SDR-2-CON-IR-ZA-2430 |  | Repair for irrigation Works | 2d | 2027-06-30 | 2027-07-01 | SDR-2-CON-IR-ZA-2420, SDR-2-CON-IR-ZA-2350 FF, SDR-2-CON-IR-ZA-2390 FF |  |  |  |  | 3d | 0d | SIC- Cost [198.55]; Excavator Operator [38.41 h]; Labor [38.41 h]; Landscape Crew [38.41 h] | 10,356.3 | Z A |
|  | 8 | **IRRIGATION WORKS IN ( PH2-A-MCH0 )** |  | 2027-05-11 | 2027-07-01 |  |  |  |  |  |  |  |  |  |  |
|  | 7 | **Pre install** |  | 2027-05-11 | 2027-06-01 |  |  |  |  |  |  |  |  |  |  |
| SDR-2-CON-IR-ZA-2440 |  | Pre Install for irrigation Works | 14d | 2027-05-11 | 2027-06-01 | SDR-2-CON-IR-ZA-1000 SS, SDR-2-CON-ST-ZA-4770 |  |  |  |  | 3d | 0d | SIC- Cost [8286.74]; Excavator Operator [1086.35 h]; Loader [46.4 h]; Labor [1086.35 h]; Landscape Crew [1086.35 h] | 31,068.91 | Z A |
|  | 8 | **install** |  | 2027-06-02 | 2027-06-16 |  |  |  |  |  |  |  |  |  |  |
| SDR-2-CON-IR-ZA-2450 |  | Installation of HDPE Pipe | 13d | 2027-06-02 | 2027-06-16 | SDR-2-CON-IR-ZA-2440 |  |  |  |  | 3d | 0d | SIC- Cost [38671.4]; Excavator Operator [96.01 h]; Labor [96.01 h]; Landscape Crew [96.01 h] | 51,781.52 | Z A |
|  | 9 | **Finishing** |  | 2027-06-17 | 2027-06-29 |  |  |  |  |  |  |  |  |  |  |
| SDR-2-CON-IR-ZA-2460 |  | Finishing Works for irrigation | 11d | 2027-06-17 | 2027-06-29 | SDR-2-CON-IR-ZA-2450 |  |  |  |  | 3d | 0d | SIC- Cost [15211.8]; Excavator Operator [25.6 h]; Labor [25.6 h]; Landscape Crew [25.6 h] | 10,356.3 | Z A |
|  | 10 | **Repairs** |  | 2027-06-30 | 2027-07-01 |  |  |  |  |  |  |  |  |  |  |
| SDR-2-CON-IR-ZA-2470 |  | Repair for irrigation Works | 2d | 2027-06-30 | 2027-07-01 | SDR-2-CON-IR-ZA-2460, SDR-2-CON-IR-ZA-2430 FF |  |  |  |  | 3d | 0d | SIC- Cost [198.55]; Excavator Operator [38.41 h]; Labor [38.41 h]; Landscape Crew [38.41 h] | 10,356.3 | Z A |
|  | 9 | **IRRIGATION WORKS IN ( PH2-ART-MC00 )** |  | 2026-09-28 | 2027-07-01 |  |  |  |  |  |  |  |  |  |  |
|  | 7 | **Pre install** |  | 2026-09-28 | 2027-06-08 |  |  |  |  |  |  |  |  |  |  |
| SDR-2-CON-IR-ZA-2480 |  | Pre Install for irrigation Works | 20d | 2026-09-28 A | 2027-06-08 | SDR-2-CON-IR-ZA-1000 SS, SDR-2-CON-ST-ZA-4920 | 25% | 20d | 2027-05-08 | 2027-06-05 | 17d | 0d | SIC- Cost [8286.74]; Excavator Operator [271.59 h]; Loader [46.4 h]; Labor [271.59 h]; Landscape Crew [271.59 h] | 31,068.91 | Z A |
|  | 8 | **install** |  | 2026-10-01 | 2027-05-31 |  |  |  |  |  |  |  |  |  |  |
| SDR-2-CON-IR-ZA-2490 |  | Installation of HDPE Pipe | 13d | 2026-10-01 A | 2027-05-31 | SDR-2-CON-IR-ZA-2480 SS+10d | 25% | 13d | 2027-05-12 | 2027-06-01 | 17d | 0d | SIC- Cost [38671.4]; Excavator Operator [90.19 h]; Labor [70.04 h]; Landscape Crew [271.59 h] | 51,781.52 | Z A |

| ID | WBS | Activity | Duration | Start | Finish | Predecessors | Complete | Remaining | Planned start | Planned finish | Total float | Free float | Resources | Cost | ZONE A |
| --- | --- | --- | --- | --- | --- | --- | --- | --- | --- | --- | --- | --- | --- | --- | --- |
|  | 9 | **Finishing** |  | 2027-06-01 | 2027-06-13 |  |  |  |  |  |  |  |  |  |  |
| SDR-2-CON-IR-ZA-2500 |  | Finishing Works for irrigation | 11d | 2027-06-01 | 2027-06-13 | SDR-2-CON-IR-ZA-2490 |  |  |  |  | 17d | 14d | SIC- Cost [15211.8]; Excavator Operator [90.2 h]; Labor [70.04 h]; Landscape Crew [271.59 h] | 10,356.3 | Z A |
|  | 10 | **Repairs** |  | 2027-06-30 | 2027-07-01 |  |  |  |  |  |  |  |  |  |  |
| SDR-2-CON-IR-ZA-2510 |  | Repair for irrigation Works | 2d | 2027-06-30 | 2027-07-01 | SDR-2-CON-IR-ZA-2500, SDR-2-CON-IR-ZA-2470 FF |  |  |  |  | 3d | 0d | SIC- Cost [198.55]; Excavator Operator [38.41 h]; Labor [38.41 h]; Landscape Crew [38.41 h] | 10,356.3 | Z A |
|  | 10 | **IRRIGATION WORKS IN ( PH2-ART-MC10 )** |  | 2026-08-31 | 2027-07-01 |  |  |  |  |  |  |  |  |  |  |
|  | 7 | **Pre install** |  | 2026-08-31 | 2027-05-11 |  |  |  |  |  |  |  |  |  |  |
| SDR-2-CON-IR-ZA-2520 |  | Pre Install for irrigation Works | 20d | 2026-08-31 A | 2027-05-11 | SDR-2-CON-IR-ZA-1000 FF, SDR-2-CON-ST-ZA-4920 FF | 25% | 2.7d | 2027-05-08 | 2027-06-05 | 1.7d | 0d | SIC- Cost [8286.74]; Excavator Operator [271.59 h]; Loader [46.4 h]; Labor [271.59 h]; Landscape Crew [271.59 h] | 31,068.91 | Z A |
|  | 8 | **install** |  | 2026-10-03 | 2027-06-01 |  |  |  |  |  |  |  |  |  |  |
| SDR-2-CON-IR-ZA-2530 |  | Installation of HDPE Pipe | 13d | 2026-10-03 A | 2027-06-01 | SDR-2-CON-IR-ZA-2520 | 10% | 13d | 2027-05-09 | 2027-05-29 | 16d | 0d | SIC- Cost [38671.4]; Excavator Operator [90.19 h]; Labor [80.12 h]; Landscape Crew [271.59 h] | 51,781.52 | Z A |
|  | 9 | **Finishing** |  | 2027-06-02 | 2027-06-14 |  |  |  |  |  |  |  |  |  |  |
| SDR-2-CON-IR-ZA-2540 |  | Finishing Works for irrigation | 11d | 2027-06-02 | 2027-06-14 | SDR-2-CON-IR-ZA-2530 |  |  |  |  | 16d | 13d | SIC- Cost [15211.8]; Excavator Operator [90.2 h]; Labor [80.12 h]; Landscape Crew [271.59 h] | 10,356.3 | Z A |
|  | 10 | **Repairs** |  | 2027-06-30 | 2027-07-01 |  |  |  |  |  |  |  |  |  |  |
| SDR-2-CON-IR-ZA-2550 |  | Repair for irrigation Works | 2d | 2027-06-30 | 2027-07-01 | SDR-2-CON-IR-ZA-2540, SDR-2-CON-IR-ZA-2510 SS |  |  |  |  | 3d | 0d | SIC- Cost [198.55]; Excavator Operator [38.41 h]; Labor [38.41 h]; Landscape Crew [38.41 h] | 10,356.3 | Z A |
|  | 13 | **Irrigation Controllers** |  | 2027-05-09 | 2027-06-30 |  |  |  |  |  |  |  |  |  |  |
|  | 1 | **Pre install** |  | 2027-05-09 | 2027-06-08 |  |  |  |  |  |  |  |  |  |  |
| SDR-2-CON-IR-ZA-2070 |  | Pre Install of Irrigation controllers | 21d | 2027-05-09 | 2027-06-08 | SDR-2-CON-IR-ZA-2520 SS |  |  |  |  | 9.7d | 0d | SIC- Cost [175932]; Loader [80 h]; Labor [271.59 h]; Landscape Crew [271.59 h] | 52,779.63 | Z A |
|  | 2 | **install** |  | 2027-05-26 | 2027-06-13 |  |  |  |  |  |  |  |  |  |  |
| SDR-2-CON-IR-ZA-2760 |  | Install Irrigation controllers | 15d | 2027-05-26 | 2027-06-13 | SDR-2-CON-IR-ZA-2070 SS+10d |  |  |  |  | 9.7d | 0d | SIC- Cost [175932]; Excavator Operator [90.19 h]; Labor [80.12 h]; Landscape Crew [271.59 h] | 87,966.06 | Z A |
|  | 3 | **Finishing** |  | 2027-06-13 | 2027-06-22 |  |  |  |  |  |  |  |  |  |  |
| SDR-2-CON-IR-ZA-2770 |  | Finishing of Irrigation controllers | 8d | 2027-06-13 | 2027-06-22 | SDR-2-CON-IR-ZA-2760 |  |  |  |  | 9.7d | 6.7d | SIC- Cost [175932]; Excavator Operator [100.27 h]; Labor [90.19 h]; Landscape Crew [271.59 h] | 17,593.21 | Z A |
|  | 4 | **Repairs** |  | 2027-06-30 | 2027-06-30 |  |  |  |  |  |  |  |  |  |  |
| SDR-2-CON-IR-ZA-2780 |  | Repairs of Irrigation controllers | 1d | 2027-06-30 | 2027-06-30 | SDR-2-CON-IR-ZA-2770, SDR-2-CON-IR-ZA-2550 SS |  |  |  |  | 3d | 1.3d | SIC- Cost [175932]; Excavator Operator [51.21 h]; Labor [51.21 h]; Landscape Crew [51.21 h] | 17,593.21 | Z A |
|  | 14 | **Decoder Cable & Conduit Works** |  | 2027-05-09 | 2027-07-03 |  |  |  |  |  |  |  |  |  |  |
|  | 1 | **Pre install** |  | 2027-05-09 | 2027-06-08 |  |  |  |  |  |  |  |  |  |  |
| SDR-2-CON-IR-ZA-2080 |  | Pre Install of Decoder Cable & Conduits Works | 21d | 2027-05-09 | 2027-06-08 | SDR-2-CON-IR-ZA-2520 SS |  |  |  |  | 1.7d | 0d | SIC- Cost [58976]; Loader [50 h]; Labor [271.59 h]; Landscape Crew [271.59 h] | 44,232 | Z A |

| ID | WBS | Activity | Duration | Start | Finish | Predecessors | Total float | Free float | Resources | Cost | ZONE A |
| --- | --- | --- | --- | --- | --- | --- | --- | --- | --- | --- | --- |
|  | 2 | **install** |  | 2027-06-08 | 2027-06-26 |  |  |  |  |  |  |
| SDR-2-CON-IR-ZA-2090 |  | Install of Decoder Cable & Conduits Works | 15d | 2027-06-08 | 2027-06-26 | SDR-2-CON-IR-ZA-2080, SDR-2-CON-IR-ZA-2080 FF | 1.7d | 0d | SIC- Cost [88464]; Labor [271.59 h]; Landscape Crew [271.59 h] | 73,720 | Z A |
|  | 3 | **Finishing** |  | 2027-06-26 | 2027-07-01 |  |  |  |  |  |  |
| SDR-2-CON-IR-ZA-2790 |  | Finishing of Decoder Cable & Conduits Works | 5d | 2027-06-26 | 2027-07-01 | SDR-2-CON-IR-ZA-2090 | 1.7d | 0d | SIC- Cost [88464]; Excavator Operator [110.34 h]; Labor [100.27 h]; Landscape Crew [271.59 h] | 14,744 | Z A |
|  | 4 | **Repairs** |  | 2027-07-01 | 2027-07-03 |  |  |  |  |  |  |
| SDR-2-CON-IR-ZA-2800 |  | Repair of Decoder Cable & Conduits Works | 1d | 2027-07-01 | 2027-07-03 | SDR-2-CON-IR-ZA-2790, SDR-2-CON-IR-ZA-2270 FF, SDR-2-CON-IR-ZA-2780 FF | 1.7d | 0d | SIC- Cost; Excavator Operator; Labor; Landscape Crew | 14,744 | Z A |
|  | 15 | **Solar Power System Installation** |  | 2027-05-09 | 2027-07-04 |  |  |  |  |  |  |
|  | 1 | **Pre install** |  | 2027-05-09 | 2027-06-08 |  |  |  |  |  |  |
| SDR-2-CON-IR-ZA-2100 |  | Pre Install of Solar Power System Installation | 21d | 2027-05-09 | 2027-06-08 | SDR-2-CON-IR-ZA-2520 SS | 1.7d | 0d | SIC- Cost [43281.5]; Labor [271.59 h]; Landscape Crew [271.59 h] | 12,984.46 | Z A |
|  | 2 | **install** |  | 2027-06-08 | 2027-06-26 |  |  |  |  |  |  |
| SDR-2-CON-IR-ZA-2810 |  | Install of Pre Install of Solar Power System Installation | 15d | 2027-06-08 | 2027-06-26 | SDR-2-CON-IR-ZA-2100 | 1.7d | 0d | SIC- Cost [43281.5]; Excavator Operator [90.19 h]; Labor [80.12 h]; Landscape Crew [271.59 h] | 21,640.78 | Z A |
|  | 3 | **Finishing** |  | 2027-06-26 | 2027-07-03 |  |  |  |  |  |  |
| SDR-2-CON-IR-ZA-2820 |  | Finishing of Pre Install of Solar Power System Installation | 6d | 2027-06-26 | 2027-07-03 | SDR-2-CON-IR-ZA-2810 | 1.7d | 0d | SIC- Cost [43281.5]; Excavator Operator [120.43 h]; Labor [120.43 h]; Landscape Crew [271.59 h] | 4,328.15 | Z A |
|  | 4 | **Repairs** |  | 2027-07-03 | 2027-07-04 |  |  |  |  |  |  |
| SDR-2-CON-IR-ZA-2830 |  | Repair of Solar Power System Installation | 1d | 2027-07-03 | 2027-07-04 | SDR-2-CON-IR-ZA-2820, SDR-2-CON-IR-ZA-2800 | 1.7d | 0d | SIC- Cost [43281.5]; Excavator Operator [271.59 h]; Labor [271.59 h]; Landscape Crew [271.59 h] | 4,328.15 | Z A |
|  | 16 | **System Integration & Programming** |  | 2027-05-09 | 2027-07-04 |  |  |  |  |  |  |
|  | 1 | **Pre install** |  | 2027-05-09 | 2027-06-08 |  |  |  |  |  |  |
| SDR-2-CON-IR-ZA-2110 |  | Pre Install of System Integration & Programming | 21d | 2027-05-09 | 2027-06-08 | SDR-2-CON-IR-ZA-2520 SS | 9.7d | 0d | SIC- Cost [238542]; Labor [271.59 h]; Landscape Crew [271.59 h] | 71,562.57 | Z A |
|  | 2 | **install** |  | 2027-05-26 | 2027-06-13 |  |  |  |  |  |  |
| SDR-2-CON-IR-ZA-2840 |  | Install of System Integration & Programming | 15d | 2027-05-26 | 2027-06-13 | SDR-2-CON-IR-ZA-2110 SS+10d | 9.7d | 0d | SIC- Cost [238542]; Excavator Operator [90.19 h]; Labor [90.19 h]; Landscape Crew [271.59 h] | 119,270.94 | Z A |
|  | 3 | **Finishing** |  | 2027-06-13 | 2027-06-22 |  |  |  |  |  |  |
| SDR-2-CON-IR-ZA-2850 |  | Finishing of System Integration & Programming | 8d | 2027-06-13 | 2027-06-22 | SDR-2-CON-IR-ZA-2840 | 9.7d | 8d | SIC- Cost [238542]; Excavator Operator [120.43 h]; Labor [120.43 h]; Landscape Crew [271.59 h] | 23,854.19 | Z A |
|  | 4 | **Repairs** |  | 2027-07-03 | 2027-07-04 |  |  |  |  |  |  |
| SDR-2-CON-IR-ZA-2860 |  | Repair of System Integration & Programming | 1d | 2027-07-03 | 2027-07-04 | SDR-2-CON-IR-ZA-2850 FS+1d, SDR-2-CON-IR-ZA-2830 FF | 1.7d | 0d | SIC- Cost [238542]; Excavator Operator [19.2 h]; Labor [19.2 h]; Landscape Crew [19.2 h] | 23,854.19 | Z A |

| ID | WBS | Activity | Duration | Start | Finish | Predecessors | Total float | Free float | Resources | Cost | ZONE A | ZONE G |
| --- | --- | --- | --- | --- | --- | --- | --- | --- | --- | --- | --- | --- |
|  | 1 | **Landscape Works** |  | 2027-05-11 | 2027-07-04 |  |  |  |  |  |  |  |
|  | 1 | **GROUND COVER** |  | 2027-05-11 | 2027-06-09 |  |  |  |  |  |  |  |
| SDR-2-CON-LS-ZA-1000 |  | Clearing & grubbing of landscape areas | 15d | 2027-05-11 | 2027-06-02 | SDR-2-CON-ST-ZA-6120, SDR-2-CLO-AS-C-1010, SDR-2-CON-IR-ZA-2520 SS | 5d | 0d | SIC- Cost [88452]; Labor [3802.22 h]; Landscape Crew [3802.22 h] | 88,452 | Z A |  |
| SDR-2-CON-LS-ZA-1010 |  | Grass laying | 14d | 2027-05-25 | 2027-06-09 | SDR-2-CON-LS-ZA-1000 SS+7d | 5d | 0d | SIC- Cost [353808]; Labor [271.59 h]; Landscape Crew [271.59 h] | 353,808 | Z A |  |
|  | 2 | **Trees** |  | 2027-06-10 | 2027-06-29 |  |  |  |  |  |  |  |
| SDR-2-CON-LS-ZA-1020 |  | Albizia lebbeck tress planting. | 14d | 2027-06-10 | 2027-06-26 | SDR-2-CON-LS-ZA-1010 | 5d | 0d | SIC- Cost [1452158]; Labor [271.59 h]; Landscape Crew [271.59 h] | 1,452,157.7 | Z A |  |
| SDR-2-CON-LS-ZA-1030 |  | Tabopia tress planting. | 14d | 2027-06-10 | 2027-06-26 | SDR-2-CON-LS-ZA-1020 SS | 5d | 0d | SIC- Cost [13594.3]; Labor [271.59 h]; Landscape Crew [271.59 h] | 13,594.31 | Z A |  |
| SDR-2-CON-LS-ZA-1040 |  | Plumeria alba tress planting. | 14d | 2027-06-14 | 2027-06-29 | SDR-2-CON-LS-ZA-1030 SS+3d | 5d | 0d | SIC- Cost [12907.7]; Labor [271.59 h]; Landscape Crew [271.59 h] | 12,907.69 | Z A |  |
| SDR-2-CON-LS-ZA-1050 |  | Cassia glauca tress planting. | 14d | 2027-06-14 | 2027-06-29 | SDR-2-CON-LS-ZA-1040 SS | 5d | 4.3d | SIC- Cost [13594.3]; Labor [271.59 h]; Landscape Crew [271.59 h] | 13,594.31 | Z A |  |
|  | 3 | **Miscellaneous landscaping items** |  | 2027-06-19 | 2027-07-04 |  |  |  |  |  |  |  |
| SDR-2-CON-LS-ZA-1060 |  | Gravel/Stone mulch: 75mm thick Hard, durable stone, washed free of loam, sand, clay, | 13d | 2027-06-19 | 2027-07-04 | SDR-2-CON-LS-ZA-1050 SS, SDR-2-CON-IR-ZA-2230 FF, SDR-2-CON-IR-ZA-2860 FF | 1.7d |  | SIC- Cost [19375.8]; Labor [271.59 h]; Landscape Crew [271.59 h] | 19,375.75 | Z A |  |
|  | ZG | **ZONE G** |  | 2027-05-09 | 2027-07-04 |  |  |  |  |  |  |  |
|  | 2 | **Irrigation Works** |  | 2027-05-09 | 2027-07-04 |  |  |  |  |  |  |  |
|  | 11 | **IRRIGATION WORKS IN ( PH2-G-MCE0 )** |  | 2027-05-11 | 2027-06-26 |  |  |  |  |  |  |  |
|  | 7 | **Pre install** |  | 2027-05-11 | 2027-06-08 |  |  |  |  |  |  |  |
| SDR-2-CON-IR-ZA-2560 |  | Pre Install for irrigation Works | 20d | 2027-05-11 | 2027-06-08 | SDR-2-CON-IR-ZA-1000 SS, SDR-2-CON-ST-ZA-5520 FF | 8d | 0d | SIC- Cost [8286.74]; Excavator Operator [271.59 h]; Labor [271.59 h]; Landscape Crew [271.59 h] | 31,068.91 |  | Z G |
|  | 8 | **install** |  | 2027-06-09 | 2027-06-23 |  |  |  |  |  |  |  |
| SDR-2-CON-IR-ZA-2570 |  | Installation of HDPE Pipe | 13d | 2027-06-09 | 2027-06-23 | SDR-2-CON-IR-ZA-2560 | 8d | 0d | SIC- Cost [38671.4]; Excavator Operator [90.19 h]; Labor [271.59 h]; Landscape Crew [271.59 h] | 51,781.52 |  | Z G |
|  | 9 | **Finishing** |  | 2027-06-15 | 2027-06-26 |  |  |  |  |  |  |  |
| SDR-2-CON-IR-ZA-2580 |  | Finishing Works for irrigation | 10d | 2027-06-15 | 2027-06-26 | SDR-2-CON-IR-ZA-2570 SS+5d | 8d | 0d | SIC- Cost [15211.8]; Excavator Operator [90.19 h]; Labor [80.12 h]; Landscape Crew [271.59 h] | 10,356.3 |  | Z G |
|  | 10 | **Repairs** |  | 2027-06-15 | 2027-06-17 |  |  |  |  |  |  |  |
| SDR-2-CON-IR-ZA-2590 |  | Repair for irrigation Works | 3d | 2027-06-15 | 2027-06-17 | SDR-2-CON-IR-ZA-2580 SS | 15d | 9d | SIC- Cost [198.55]; Excavator Operator [271.59 h]; Labor [271.59 h]; Landscape Crew [271.59 h] | 10,356.3 |  | Z G |
|  | 5 | **IRRIGATION WORKS IN ( PH2-G-MCZ0 )** |  | 2027-05-11 | 2027-06-28 |  |  |  |  |  |  |  |
|  | 7 | **Pre install** |  | 2027-05-11 | 2027-06-08 |  |  |  |  |  |  |  |
| SDR-2-CON-IR-ZA-2600 |  | Pre Install for irrigation Works | 20d | 2027-05-11 | 2027-06-08 | SDR-2-CON-IR-ZA-1000 SS, SDR-2-CON-ST-ZA-5670 FF | 6d | 0d | SIC- Cost [8286.74]; Excavator Operator [271.59 h]; Labor [271.59 h]; Landscape Crew [271.59 h] | 31,068.91 |  | Z G |

| ID | WBS | Activity | Duration | Start | Finish | Predecessors | Total float | Free float | Resources | Cost | ZONE G |
| --- | --- | --- | --- | --- | --- | --- | --- | --- | --- | --- | --- |
|  | 8 | **install** |  | 2027-06-09 | 2027-06-23 |  |  |  |  |  |  |
| SDR-2-CON-IR-ZA-2610 |  | Installation of HDPE Pipe | 13d | 2027-06-09 | 2027-06-23 | SDR-2-CON-IR-ZA-2600 | 6d | 0d | SIC- Cost [38671.4]; Excavator Operator [90.19 h]; Labor [80.12 h]; Landscape Crew [271.59 h] | 51,781.52 | Z G |
|  | 9 | **Finishing** |  | 2027-06-14 | 2027-06-24 |  |  |  |  |  |  |
| SDR-2-CON-IR-ZA-2620 |  | Finishing Works for irrigation | 10d | 2027-06-14 | 2027-06-24 | SDR-2-CON-IR-ZA-2610 SS+4d | 6d | 0d | SIC- Cost [15211.8]; Excavator Operator [90.19 h]; Labor [80.12 h]; Landscape Crew [271.59 h] | 10,356.3 | Z G |
|  | 10 | **Repairs** |  | 2027-06-26 | 2027-06-28 |  |  |  |  |  |  |
| SDR-2-CON-IR-ZA-2630 |  | Repair for irrigation Works | 3d | 2027-06-26 | 2027-06-28 | SDR-2-CON-IR-ZA-2620, SDR-2-CON-IR-ZA-2590 FF | 6d | 0d | SIC- Cost [198.55]; Excavator Operator [824.34 h]; Labor [271.59 h]; Landscape Crew [271.59 h] | 10,356.3 | Z G |
|  | 1 | **IRRIGATION WORKS IN ( PH2-G-MCA0 )** |  | 2027-05-11 | 2027-06-28 |  |  |  |  |  |  |
|  | 7 | **Pre install** |  | 2027-05-11 | 2027-06-07 |  |  |  |  |  |  |
| SDR-2-CON-IR-ZA-2640 |  | Pre Install for irrigation Works | 19d | 2027-05-11 | 2027-06-07 | SDR-2-CON-IR-ZA-2600 SS, SDR-2-CON-ST-ZA-6120 FS+0.8d | 7d | 0d | SIC- Cost [8286.74]; Excavator Operator [271.59 h]; Labor [271.59 h]; Landscape Crew [271.59 h] | 31,068.91 | Z G |
|  | 8 | **install** |  | 2027-06-08 | 2027-06-22 |  |  |  |  |  |  |
| SDR-2-CON-IR-ZA-2650 |  | Installation of HDPE Pipe | 13d | 2027-06-08 | 2027-06-22 | SDR-2-CON-IR-ZA-2640 | 7d | 0d | SIC- Cost [38671.4]; Excavator Operator [90.19 h]; Labor [271.59 h]; Landscape Crew [271.59 h] | 51,781.52 | Z G |
|  | 9 | **Finishing** |  | 2027-06-14 | 2027-06-27 |  |  |  |  |  |  |
| SDR-2-CON-IR-ZA-2660 |  | Finishing Works for irrigation | 12d | 2027-06-14 | 2027-06-27 | SDR-2-CON-IR-ZA-2650 SS+5d | 7d | 11d | SIC- Cost [15211.8]; Excavator Operator [90.19 h]; Labor [80.12 h]; Landscape Crew [271.59 h] | 10,356.3 | Z G |
|  | 10 | **Repairs** |  | 2027-06-27 | 2027-06-28 |  |  |  |  |  |  |
| SDR-2-CON-IR-ZA-2670 |  | Repair for irrigation Works | 2d | 2027-06-27 | 2027-06-28 | SDR-2-CON-IR-ZA-2660 SS, SDR-2-CON-IR-ZA-2630 FF | 6d | 1d | SIC- Cost [198.55]; Excavator Operator [271.59 h]; Labor [271.59 h]; Landscape Crew [271.59 h] | 10,356.3 | Z G |
|  | 2 | **IRRIGATION WORKS IN ( PH2-G-MCF0 )** |  | 2027-05-11 | 2027-06-29 |  |  |  |  |  |  |
|  | 7 | **Pre install** |  | 2027-05-11 | 2027-06-08 |  |  |  |  |  |  |
| SDR-2-CON-IR-ZA-2680 |  | Pre Install for irrigation Works | 20d | 2027-05-11 | 2027-06-08 | SDR-2-CON-IR-ZA-1000 SS, SDR-2-CON-ST-ZA-5670 FF | 5d | 0d | SIC- Cost [8286.74]; Excavator Operator [51.21 h]; Labor [51.21 h]; Landscape Crew [51.21 h] | 31,068.91 | Z G |
|  | 8 | **install** |  | 2027-06-09 | 2027-06-23 |  |  |  |  |  |  |
| SDR-2-CON-IR-ZA-2690 |  | Installation of HDPE Pipe | 13d | 2027-06-09 | 2027-06-23 | SDR-2-CON-IR-ZA-2680 | 5d | 0d | SIC- Cost [38671.4]; Excavator Operator [96.01 h]; Labor [96.01 h]; Landscape Crew [96.01 h] | 51,781.52 | Z G |
|  | 9 | **Finishing** |  | 2027-06-15 | 2027-06-27 |  |  |  |  |  |  |
| SDR-2-CON-IR-ZA-2700 |  | Finishing Works for irrigation | 11d | 2027-06-15 | 2027-06-27 | SDR-2-CON-IR-ZA-2690 SS+5d | 5d | 0d | SIC- Cost [15211.8]; Excavator Operator [25.6 h]; Labor [25.6 h]; Landscape Crew [25.6 h] | 10,356.3 | Z G |
|  | 10 | **Repairs** |  | 2027-06-28 | 2027-06-29 |  |  |  |  |  |  |
| SDR-2-CON-IR-ZA-2710 |  | Repair for irrigation Works | 2d | 2027-06-28 | 2027-06-29 | SDR-2-CON-IR-ZA-2700, SDR-2-CON-IR-ZA-2670 FF | 5d | 0d | SIC- Cost [198.55]; Excavator Operator [38.41 h]; Labor [38.41 h]; Landscape Crew [38.41 h] | 10,356.3 | Z G |

| ID | WBS | Activity | Duration | Start | Finish | Predecessors | Total float | Free float | Resources | Cost | ZONE G |
| --- | --- | --- | --- | --- | --- | --- | --- | --- | --- | --- | --- |
|  | 3 | **IRRIGATION WORKS IN ( PH2-G-MCG0 )** |  | 2027-05-11 | 2027-06-29 |  |  |  |  |  |  |
|  | 7 | **Pre install** |  | 2027-05-11 | 2027-06-07 |  |  |  |  |  |  |
| SDR-2-CON-IR-ZA-2720 |  | Pre Install for irrigation Works | 19d | 2027-05-11 | 2027-06-07 | SDR-2-CON-IR-ZA-2600 SS, SDR-2-CON-ST-ZA-6120 FS+0.8d | 7d | 0d | SIC- Cost [8286.74]; Excavator Operator [51.21 h]; Labor [51.21 h]; Landscape Crew [51.21 h] | 31,068.91 | Z G |
|  | 8 | **install** |  | 2027-06-08 | 2027-06-22 |  |  |  |  |  |  |
| SDR-2-CON-IR-ZA-2730 |  | Installation of HDPE Pipe | 13d | 2027-06-08 | 2027-06-22 | SDR-2-CON-IR-ZA-2720, SDR-2-TC-CW-1010 | 7d | 0d | SIC- Cost [38671.4]; Excavator Operator [96.01 h]; Labor [96.01 h]; Landscape Crew [96.01 h] | 51,781.52 | Z G |
|  | 9 | **Finishing** |  | 2027-06-14 | 2027-06-27 |  |  |  |  |  |  |
| SDR-2-CON-IR-ZA-2740 |  | Finishing Works for irrigation | 12d | 2027-06-14 | 2027-06-27 | SDR-2-CON-IR-ZA-2730 SS+5d | 7d | 12d | SIC- Cost [15211.8]; Excavator Operator [25.6 h]; Labor [25.6 h]; Landscape Crew [25.6 h] | 10,356.3 | Z G |
|  | 10 | **Repairs** |  | 2027-06-28 | 2027-06-29 |  |  |  |  |  |  |
| SDR-2-CON-IR-ZA-2750 |  | Repair for irrigation Works | 2d | 2027-06-28 | 2027-06-29 | SDR-2-CON-IR-ZA-2740 SS, SDR-2-CON-IR-ZA-2710 FF | 5d | 0d | SIC- Cost [198.55]; Excavator Operator [38.41 h]; Labor [38.41 h]; Landscape Crew [38.41 h] | 10,356.3 | Z G |
|  | 13 | **Irrigation Controllers** |  | 2027-05-09 | 2027-06-29 |  |  |  |  |  |  |
|  | 1 | **Pre install** |  | 2027-05-09 | 2027-06-08 |  |  |  |  |  |  |
| SDR-2-CON-IR-ZA-2870 |  | Pre Install of Irrigation controllers | 21d | 2027-05-09 | 2027-06-08 | SDR-2-CON-IR-ZA-2520 SS | 8.7d | 0d | SIC- Cost [175932]; Excavator Operator [51.21 h]; Labor [51.21 h]; Landscape Crew [51.21 h] | 52,779.63 | Z G |
|  | 2 | **install** |  | 2027-06-08 | 2027-06-26 |  |  |  |  |  |  |
| SDR-2-CON-IR-ZA-2880 |  | Install Irrigation controllers | 15d | 2027-06-08 | 2027-06-26 | SDR-2-CON-IR-ZA-2870 | 8.7d | 0d | SIC- Cost [175932]; Excavator Operator [51.21 h]; Labor [51.21 h]; Landscape Crew [51.21 h] | 87,966.06 | Z G |
|  | 3 | **Finishing** |  | 2027-06-15 | 2027-06-24 |  |  |  |  |  |  |
| SDR-2-CON-IR-ZA-2890 |  | Finishing of Irrigation controllers | 8d | 2027-06-15 | 2027-06-24 | SDR-2-CON-IR-ZA-2880 SS+6d | 9.7d | 10.7d | SIC- Cost [175932]; Excavator Operator [51.21 h]; Labor [51.21 h]; Landscape Crew [51.21 h] | 17,593.21 | Z G |
|  | 4 | **Repairs** |  | 2027-06-28 | 2027-06-29 |  |  |  |  |  |  |
| SDR-2-CON-IR-ZA-2900 |  | Repairs of Irrigation controllers | 2d | 2027-06-28 | 2027-06-29 | SDR-2-CON-IR-ZA-2890 SS, SDR-2-CON-IR-ZA-2750 FF | 5d | 0d | SIC- Cost [175932]; Excavator Operator [51.21 h]; Labor [51.21 h]; Landscape Crew [51.21 h] | 17,593.21 | Z G |
|  | 14 | **Decoder Cable & Conduit Works** |  | 2027-05-09 | 2027-06-29 |  |  |  |  |  |  |
|  | 1 | **Pre install** |  | 2027-05-09 | 2027-06-08 |  |  |  |  |  |  |
| SDR-2-CON-IR-ZA-2910 |  | Pre Install of Decoder Cable & Conduits Works | 21d | 2027-05-09 | 2027-06-08 | SDR-2-CON-IR-ZA-2520 SS | 8.7d | 0d | SIC- Cost [58976]; Excavator Operator [32 h]; Labor [32 h]; Landscape Crew [32 h] | 44,232 | Z G |
|  | 2 | **install** |  | 2027-06-08 | 2027-06-26 |  |  |  |  |  |  |
| SDR-2-CON-IR-ZA-2920 |  | Install of Decoder Cable & Conduits Works | 15d | 2027-06-08 | 2027-06-26 | SDR-2-CON-IR-ZA-2910, SDR-2-CON-IR-ZA-2910 FF | 8.7d | 0d | SIC- Cost [88464]; Excavator Operator [32 h]; Labor [32 h]; Landscape Crew [32 h] | 73,720 | Z G |
|  | 3 | **Finishing** |  | 2027-06-13 | 2027-06-23 |  |  |  |  |  |  |
| SDR-2-CON-IR-ZA-2930 |  | Finishing of Decoder Cable & Conduits Works | 9d | 2027-06-13 | 2027-06-23 | SDR-2-CON-IR-ZA-2920 SS+4d | 10.7d | 13.7d | SIC- Cost [88464]; Excavator Operator [32 h]; Labor [32 h]; Landscape Crew [32 h] | 14,744 | Z G |

| ID | WBS | Activity | Duration | Start | Finish | Predecessors | Complete | Remaining | Planned start | Planned finish | Total float | Free float | Resources | Cost | ZONE G | ZONE A |
| --- | --- | --- | --- | --- | --- | --- | --- | --- | --- | --- | --- | --- | --- | --- | --- | --- |
|  | 4 | **Repairs** |  | 2027-06-29 | 2027-06-29 |  |  |  |  |  |  |  |  |  |  |  |
| SDR-2-CON-IR-ZA-2940 |  | Repair of Decoder Cable & Conduits Works | 1d | 2027-06-29 | 2027-06-29 | SDR-2-CON-IR-ZA-2930 SS, SDR-2-CON-IR-ZA-2900 FF |  |  |  |  | 5d |  | SIC- Cost [88464]; Excavator Operator [32 h]; Labor [32 h]; Landscape Crew [32 h] | 14,744 | Z G |  |
|  | 15 | **Solar Power System Installation** |  | 2027-05-09 | 2027-07-04 |  |  |  |  |  |  |  |  |  |  |  |
|  | 1 | **Pre install** |  | 2027-05-09 | 2027-06-08 |  |  |  |  |  |  |  |  |  |  |  |
| SDR-2-CON-IR-ZA-2950 |  | Pre Install of Solar Power System Installation | 21d | 2027-05-09 | 2027-06-08 | SDR-2-CON-IR-ZA-2520 SS |  |  |  |  | 1.7d | 0d | SIC- Cost [43281.5]; Excavator Operator [64.01 h]; Labor [64.01 h]; Landscape Crew [64.01 h] | 71,562.57 | Z G |  |
|  | 2 | **install** |  | 2027-06-08 | 2027-06-26 |  |  |  |  |  |  |  |  |  |  |  |
| SDR-2-CON-IR-ZA-2960 |  | Install of Pre Install of Solar Power System Installation | 15d | 2027-06-08 | 2027-06-26 | SDR-2-CON-IR-ZA-2950 |  |  |  |  | 1.7d | 0d | SIC- Cost [43281.5]; Excavator Operator [64.01 h]; Labor [64.01 h]; Landscape Crew [64.01 h] | 119,270.94 | Z G |  |
|  | 3 | **Finishing** |  | 2027-06-26 | 2027-07-04 |  |  |  |  |  |  |  |  |  |  |  |
| SDR-2-CON-IR-ZA-2970 |  | Finishing of Pre Install of Solar Power System Installation | 7d | 2027-06-26 | 2027-07-04 | SDR-2-CON-IR-ZA-2960 |  |  |  |  | 1.7d | 0d | SIC- Cost [43281.5]; Excavator Operator [64.01 h]; Labor [64.01 h]; Landscape Crew [64.01 h] | 23,854.19 | Z G |  |
|  | 4 | **Repairs** |  | 2027-06-26 | 2027-06-29 |  |  |  |  |  |  |  |  |  |  |  |
| SDR-2-CON-IR-ZA-2980 |  | Repair of Solar Power System Installation | 3d | 2027-06-26 | 2027-06-29 | SDR-2-CON-IR-ZA-2970 SS |  |  |  |  | 5.7d |  | SIC- Cost [43281.5]; Excavator Operator [64.01 h]; Labor [64.01 h]; Landscape Crew [64.01 h] | 23,854.19 | Z G |  |
|  | 1 | **Landscape Works** |  | 2027-05-11 | 2027-06-29 |  |  |  |  |  |  |  |  |  |  |  |
|  | 1 | **GROUND COVER** |  | 2027-05-11 | 2027-06-17 |  |  |  |  |  |  |  |  |  |  |  |
| SDR-2-CON-LS-ZG-1000 |  | Clearing & grubbing of landscape areas | 15d | 2027-05-11 | 2027-06-02 | SDR-2-CON-LS-ZA-1000 SS, SDR-2-CON-IR-ZA-2520 SS |  |  |  |  | 5d | 0d | SIC- Cost [88452]; Labor [25.6 h]; Landscape Crew [25.6 h] | 88,452 | Z G |  |
| SDR-2-CON-LS-ZG-1010 |  | Grass laying | 13d | 2027-06-03 | 2027-06-17 | SDR-2-CON-LS-ZG-1000, SDR-2-CON-ST-ZA-5220, SDR-2-CON-ST-ZA-5070 |  |  |  |  | 5d | 0d | SIC- Cost [353808]; Labor [51.21 h]; Landscape Crew [51.21 h] | 353,808 | Z G |  |
|  | 2 | **Trees** |  | 2027-06-09 | 2027-06-29 |  |  |  |  |  |  |  |  |  |  |  |
| SDR-2-CON-LS-ZG-1020 |  | Albizia lebbeck tress planting. | 18d | 2027-06-09 | 2027-06-29 | SDR-2-CON-LS-ZG-1010 SS+5d |  |  |  |  | 5d | 0d | SIC- Cost [1452158]; Labor [25.6 h]; Landscape Crew [25.6 h] | 1,452,157.7 | Z G |  |
| SDR-2-CON-LS-ZG-1030 |  | Tabopia tress planting. | 18d | 2027-06-09 | 2027-06-29 | SDR-2-CON-LS-ZG-1020 SS |  |  |  |  | 5d | 0d | SIC- Cost [13594.3]; Labor [25.6 h]; Landscape Crew [25.6 h] | 13,594.31 | Z G |  |
| SDR-2-CON-LS-ZG-1040 |  | Plumeria alba tress planting. | 18d | 2027-06-09 | 2027-06-29 | SDR-2-CON-LS-ZG-1030 SS |  |  |  |  | 5d | 0d | SIC- Cost [12907.7]; Labor [25.6 h]; Landscape Crew [25.6 h] | 12,907.69 | Z G |  |
| SDR-2-CON-LS-ZG-1050 |  | Cassia glauca tress planting. | 18d | 2027-06-09 | 2027-06-29 | SDR-2-CON-LS-ZG-1040 SS |  |  |  |  | 5d | 0d | SIC- Cost [13594.3]; Labor [25.6 h]; Landscape Crew [25.6 h] | 13,594.31 | Z G |  |
|  | 3 | **Miscellaneous landscaping items** |  | 2027-06-09 | 2027-06-29 |  |  |  |  |  |  |  |  |  |  |  |
| SDR-2-CON-LS-ZG-1060 |  | Gravel/Stone mulch: 75mm thick Hard, durable stone, washed free of loam, sand, clay, | 18d | 2027-06-09 | 2027-06-29 | SDR-2-CON-LS-ZG-1050 SS |  |  |  |  | 5d |  | SIC- Cost [19375.8]; Labor [19.2 h]; Landscape Crew [19.2 h] | 19,375.75 | Z G |  |
|  | CC | **CCTV Works** |  | 2026-07-25 | 2027-05-10 |  |  |  |  |  |  |  |  |  |  |  |
|  | ZA | **ZONE A** |  | 2026-07-25 | 2027-05-10 |  |  |  |  |  |  |  |  |  |  |  |
|  | 1 | **Poles 1st and 2nd Fix Works** |  | 2026-07-25 | 2027-01-13 |  |  |  |  |  |  |  |  |  |  |  |
|  | 1 | **Excavation** |  | 2026-07-25 | 2026-12-26 |  |  |  |  |  |  |  |  |  |  |  |
| SDR-2-CON-CC-ZA-1000 |  | Excavation 1Sst & 2nd Fix Works | 10d | 2026-07-25 A | 2026-12-26 | SDR-2-CON-ST-ZA-6190, SDR-2-CON-MV-ZA-1000 FF, SDR-2-PRO-DEL-E-1130 FF, SDR-2-PRO-DEL-M-1070 FF, SDR-2-PRO-DEL-M-1060 FF, SDR-2-PRO-DEL-E-1100 FF, SDR-2-CON-ST-ZA-6280 FF, SDR-2-PRO-ST-E-1140 FF, SDR-2-PRO-ST-E-1170 FF | 50% | 1d | 2026-09-02 | 2026-09-13 | 14d | 9d | SIC- Cost [48735]; Electrical Forman [66.88 h]; Surveyor [66.88 h]; Labor [133.75 h] | 34,975.94 |  | Z A |

| ID | WBS | Activity | Duration | Start | Finish | Predecessors | Complete | Remaining | Planned start | Planned finish | Total float | Free float | Resources | Cost | ZONE A |
| --- | --- | --- | --- | --- | --- | --- | --- | --- | --- | --- | --- | --- | --- | --- | --- |
|  | 2 | **Install Footings** |  | 2026-09-03 | 2027-01-04 |  |  |  |  |  |  |  |  |  |  |
| SDR-2-CON-CC-ZA-1030 |  | Install Footings | 7d | 2026-09-03 A | 2027-01-04 | SDR-2-CON-CC-ZA-1000 FF, SDR-2-PRO-DEL-E-1120 FF, SDR-2-PRO-DEL-E-1110 FF, SDR-2-PRO-DEL-E-1140 FF, SDR-2-PRO-DEL-E-1080 FF | 30% | 1d | 2026-09-14 | 2026-09-21 | 5d | 0d | SIC- Cost [48735]; Electrical Forman [286.61 h]; Electrical Technician [191.07 h]; Electrical Helper [143.3 h]; Labor [238.84 h] | 34,975.94 | Z A |
|  | 3 | **Backfilling** |  | 2027-01-05 | 2027-01-12 |  |  |  |  |  |  |  |  |  |  |
| SDR-2-CON-CC-ZA-1050 |  | Backfilling 1Sst & 2nd Fix Works | 7d | 2027-01-05 | 2027-01-12 | SDR-2-CON-CC-ZA-1030 SS, SDR-2-CON-CC-ZA-1030 |  |  |  |  | 5d | 0d | SIC- Cost [48735]; Electrical Forman [191.07 h]; Electrical Technician [238.84 h]; Electrical Helper [191.07 h]; Labor [143.3 h]; Excavator [6 h]; Excavator Operator [382.14 h] | 34,975.94 | Z A |
|  | 4 | **Install pole** |  | 2027-01-05 | 2027-01-13 |  |  |  |  |  |  |  |  |  |  |
| SDR-2-CON-CC-ZA-1060 |  | Install Pole | 8d | 2027-01-05 | 2027-01-13 | SDR-2-PRO-DEL-E-1150, SDR-2-CON-CC-ZA-1050 SS |  |  |  |  | 5d | 1d | SIC- Cost [48735]; Electrical Forman [57.32 h]; Electrical Technician [143.3 h]; Electrical Helper [114.64 h]; Labor [171.96 h] | 244,831.58 | Z A |
|  | 2 | **25m Pole Package** |  | 2026-08-01 | 2027-04-21 |  |  |  |  |  |  |  |  |  |  |
|  | 1 | **Excavation** |  | 2026-08-01 | 2027-01-14 |  |  |  |  |  |  |  |  |  |  |
| SDR-2-CON-CC-ZA-1080 |  | 25 Meters Pole Excavation | 21d | 2026-08-01 A | 2027-01-14 | SDR-2-PRO-ST-E-1090, SDR-2-PRO-MAS-C-1090, SDR-2-PRO-DEL-E-1150 FF, SDR-2-PRO-ST-C-1080 FF, SDR-2-CON-CC-ZA-1060 FF, SDR-2-PRO-ST-E-1160 FF, SDR-2-PRO-ST-E-1150 FF, SDR-2-PRO-MAS-E-1030 | 50% | 1d | 2026-10-11 | 2026-11-03 | 4d | 0d | SIC- Cost [185175]; Electrical Forman [89.61 h]; Electrical Technician [89.61 h]; Electrical Helper [89.61 h]; Labor [89.61 h] | 231,959.01 | Z A |
|  | 2 | **Install Footings** |  | 2026-09-03 | 2027-01-14 |  |  |  |  |  |  |  |  |  |  |
| SDR-2-CON-CC-ZA-1090 |  | 25 Meters pole installation Footings | 20d | 2026-09-03 A | 2027-01-14 | SDR-2-PRO-MAL-E-1110, SDR-2-CON-CC-ZA-1080 FF, SDR-2-PRO-DEL-E-1160 FF, SDR-2-PRO-DEL-E-1190 FF, SDR-2-PRO-DEL-E-1180 FF, SDR-2-PRO-DEL-E-1170 FF, SDR-2-PRO-ST-C-1090 FF | 30% | 5.9d | 2026-11-04 | 2026-11-26 | 53d | 44d | SIC- Cost [592560]; Electrical Forman [89.61 h]; Electrical Technician [89.61 h]; Electrical Helper [89.61 h]; Labor [89.61 h] | 231,959.01 | Z A |
|  | 3 | **Backfilling** |  | 2027-03-23 | 2027-04-15 |  |  |  |  |  |  |  |  |  |  |
| SDR-2-CON-CC-ZA-1100 |  | 25 Meters pole Backfilling | 21d | 2027-03-23 | 2027-04-15 | SDR-2-CON-SL-ZA-1400, SDR-2-CON-SL-ZA-2890, SDR-2-CON-SL-ZA-1100, SDR-2-CON-TE-ZA-1050, SDR-2-CON-CC-ZA-1090 FS+8d |  |  |  |  | 9d | 0d | SIC- Cost [150301]; Electrical Forman [44.81 h]; Electrical Technician [44.81 h]; Electrical Helper [44.81 h]; Labor [44.81 h] | 231,959.01 | Z A |
|  | 4 | **Install pole** |  | 2027-03-29 | 2027-04-21 |  |  |  |  |  |  |  |  |  |  |
| SDR-2-CON-CC-ZA-1110 |  | 25 Meters pole installation | 21d | 2027-03-29 | 2027-04-21 | SDR-2-CON-CC-ZA-1100 SS+5d |  |  |  |  | 9d | 0d | SIC- Cost [1470.13]; Electrical Forman [32 h]; Electrical Technician [32 h]; Electrical Helper [32 h]; Labor [32 h] | 1,623,713.1 | Z A |
|  | 3 | **7m Pole Package** |  | 2026-08-01 | 2027-03-20 |  |  |  |  |  |  |  |  |  |  |
|  | 1 | **Excavation** |  | 2026-08-01 | 2027-01-14 |  |  |  |  |  |  |  |  |  |  |
| SDR-2-CON-CC-ZA-1240 |  | 7m Meters Pole Excavation | 21d | 2026-08-01 A | 2027-01-14 | SDR-2-CON-CC-ZA-1080 FF, SDR-2-CON-ST-ZA-6330 FF, SDR-2-PRO-ST-E-1190 FF | 50% | 1d | 2026-10-11 | 2026-11-03 | 4d | 0d | SIC- Cost [5323.36]; Electrical Forman [64.01 h]; Electrical Technician [64.01 h]; Electrical Helper [64.01 h]; Labor [64.01 h] | 111,022.69 | Z A |
|  | 2 | **Install Footings** |  | 2026-09-03 | 2027-01-14 |  |  |  |  |  |  |  |  |  |  |
| SDR-2-CON-CC-ZA-1250 |  | 7m Meters pole installation Footings | 21d | 2026-09-03 A | 2027-01-14 | SDR-2-CON-CC-ZA-1240 FF | 30% | 6d | 2026-11-04 | 2026-11-28 | 37d | 0d | SIC- Cost [10646.7]; Electrical Forman [38.41 h]; Electrical Technician [38.41 h]; Electrical Helper [38.41 h]; Labor [38.41 h] | 111,022.69 | Z A |
|  | 3 | **Backfilling** |  | 2027-01-24 | 2027-02-16 |  |  |  |  |  |  |  |  |  |  |
| SDR-2-CON-CC-ZA-1260 |  | 7m Meters pole Backfilling | 21d | 2027-01-24 | 2027-02-16 | SDR-2-CON-RW-ZG-2500, SDR-2-CON-TE-ZA-1050, SDR-2-CON-CC-ZA-1250 FS+7d |  |  |  |  | 37d | 0d | SIC- Cost [37263.5]; Electrical Forman [64.01 h]; Electrical Technician [64.01 h]; Electrical Helper [64.01 h]; Labor [64.01 h] | 111,022.69 | Z A |
|  | 4 | **Install pole** |  | 2027-02-18 | 2027-03-20 |  |  |  |  |  |  |  |  |  |  |
| SDR-2-CON-CC-ZA-1270 |  | 7 Meters pole Installation | 21d | 2027-02-18 | 2027-03-20 | SDR-2-CON-RW-ZG-1960, SDR-2-CON-CC-ZA-1260 FS+1d |  |  |  |  | 37d | 28d | SIC- Cost [99804.4]; Electrical Forman [25.6 h]; Electrical Technician [25.6 h]; Electrical Helper [25.6 h]; Labor [25.6 h] | 777,158.76 | Z A |

| ID | WBS | Activity | Duration | Start | Finish | Predecessors | Complete | Remaining | Planned start | Planned finish | Total float | Free float | Resources | Cost | ZONE A |
| --- | --- | --- | --- | --- | --- | --- | --- | --- | --- | --- | --- | --- | --- | --- | --- |
|  | 4 | **35m Pole Package** |  | 2026-08-01 | 2027-05-10 |  |  |  |  |  |  |  |  |  |  |
|  | 1 | **Excavation** |  | 2026-08-01 | 2027-01-14 |  |  |  |  |  |  |  |  |  |  |
| SDR-2-CON-CC-ZA-1380 |  | 35m Meters Pole Excavation | 18d | 2026-08-01 A | 2027-01-14 | SDR-2-CON-CC-ZA-1240 FF, SDR-2-PRO-ST-E-1180 FF, SDR-2-PRO-ST-E-1210 FF, SDR-2-PRO-ST-E-1220 FF, SDR-2-PRO-ST-E-1230 FF | 50% | 1d | 2026-11-04 | 2026-11-24 | 4d | 0d | SIC- Cost [14529.3]; Electrical Forman [44.81 h]; Electrical Technician [44.81 h]; Electrical Helper [44.81 h]; Labor [44.81 h] | 48,470.01 | Z A |
|  | 2 | **Install Footings** |  | 2026-09-03 | 2027-01-16 |  |  |  |  |  |  |  |  |  |  |
| SDR-2-CON-CC-ZA-1390 |  | 35m Meters pole installation Footings | 15d | 2026-09-03 A | 2027-01-16 | SDR-2-CON-CC-ZA-1380 FF, SDR-2-CON-SL-ZA-3100 FF | 30% | 0d | 2026-11-25 | 2026-12-12 | 95d | 57d | SIC- Cost [165335]; Electrical Forman [44.81 h]; Electrical Technician [44.81 h]; Electrical Helper [44.81 h]; Labor [44.81 h] | 48,470.28 | Z A |
|  | 3 | **Backfilling** |  | 2027-03-29 | 2027-04-17 |  |  |  |  |  |  |  |  |  |  |
| SDR-2-CON-CC-ZA-1400 |  | 35m Meters pole Backfilling | 17d | 2027-03-29 | 2027-04-17 | SDR-2-CON-MV-ZA-1300, SDR-2-CON-SL-ZA-3580, SDR-2-CON-SL-ZA-3550, SDR-2-CON-SL-ZA-3520, SDR-2-CON-SL-ZA-2860, SDR-2-CON-SL-ZA-2840, SDR-2-CON-SL-ZA-2800, SDR-2-CON-TE-ZA-3280, SDR-2-CON-CC-ZA-1390 |  |  |  |  | 43d | 0d | SIC- Cost [23297.2]; Electrical Forman [25.6 h]; Electrical Technician [25.6 h]; Electrical Helper [25.6 h]; Labor [25.6 h] | 48,470.28 | Z A |
|  | 4 | **Install pole** |  | 2027-04-18 | 2027-05-10 |  |  |  |  |  |  |  |  |  |  |
| SDR-2-CON-CC-ZA-1410 |  | 35 Meters pole Installation | 20d | 2027-04-18 | 2027-05-10 | SDR-2-PRO-DEL-E-1200 SS, SDR-2-CON-SL-ZA-2820, SDR-2-CON-CC-ZA-1400 |  |  |  |  | 43d |  | SIC- Cost [1252.65]; Electrical Forman [25.6 h]; Electrical Technician [25.6 h]; Electrical Helper [25.6 h]; Labor [25.6 h] | 339,292.01 | Z A |
|  | 5 | **Control Room** |  | 2027-02-02 | 2027-02-25 |  |  |  |  |  |  |  |  |  |  |
| SDR-2-CON-CC-ZA-1500 |  | Existing Control Room Preparation to accomodate the new equipment | 6d | 2027-02-02 | 2027-02-08 | SDR-2-PRO-ST-E-1240, SDR-2-CON-CC-ZA-1380 FS+15d |  |  |  |  | 4d | 0d | SIC- Cost [141563]; Electrical Forman [25.6 h]; Electrical Technician [25.6 h]; Electrical Helper [25.6 h]; Labor [25.6 h] | 141,563.33 | Z A |
| SDR-2-CON-CC-ZA-1510 |  | VMS Server | 4d | 2027-02-02 | 2027-02-06 | SDR-2-CON-MV-ZA-1300, SDR-2-CON-SL-ZA-1400, SDR-2-CON-CC-ZA-1500 SS |  |  |  |  | 4d | 0d | SIC- Cost [193147]; Electrical Forman [25.6 h]; Electrical Technician [25.6 h]; Electrical Helper [25.6 h]; Labor [25.6 h] | 193,147.24 | Z A |
| SDR-2-CON-CC-ZA-1520 |  | Surveillance-optimized server for recording CCTV support simultaneous cameras stream and recording at high resolution | 4d | 2027-02-03 | 2027-02-07 | SDR-2-CON-CC-ZA-1510 SS+1d |  |  |  |  | 4d | 0d | SIC- Cost [361244]; Electrical Forman [25.6 h]; Electrical Technician [25.6 h]; Electrical Helper [25.6 h]; Labor [25.6 h] | 361,243.58 | Z A |
| SDR-2-CON-CC-ZA-1530 |  | Video analytic computing hardware | 4d | 2027-02-04 | 2027-02-08 | SDR-2-CON-SL-ZA-1400, SDR-2-CON-CC-ZA-1520 SS+1d |  |  |  |  | 4d | 0d | SIC- Cost [270547]; Electrical Forman [25.6 h]; Electrical Technician [25.6 h]; Electrical Helper [25.6 h]; Labor [25.6 h] | 270,547.21 | Z A |
| SDR-2-CON-CC-ZA-1540 |  | Workstation | 8d | 2027-02-06 | 2027-02-14 | SDR-2-CON-CC-ZA-1530 SS+1d, SDR-2-PRO-MAL-E-1150 |  |  |  |  | 4d | 0d | SIC- Cost [22545.6]; Electrical Forman [51.21 h]; Electrical Technician [51.21 h]; Electrical Helper [51.21 h]; Labor [51.21 h] | 22,545.6 | Z A |
| SDR-2-CON-CC-ZA-1550 |  | Professional LED screen 32 inch for workstations | 4d | 2027-02-07 | 2027-02-10 | SDR-2-CON-CC-ZA-1540 SS+1d |  |  |  |  | 4d | 0d | SIC- Cost [16382.2]; Electrical Forman [25.6 h]; Electrical Technician [25.6 h]; Electrical Helper [25.6 h]; Labor [25.6 h] | 16,382.16 | Z A |
| SDR-2-CON-CC-ZA-1560 |  | Professional 55" video wall cube | 4d | 2027-02-09 | 2027-02-13 | SDR-2-CON-SL-ZA-1400, SDR-2-CON-CC-ZA-1550 SS+2d, SDR-2-PRO-MAL-E-1160 |  |  |  |  | 4d | 0d | SIC- Cost [57475.1]; Electrical Forman [25.6 h]; Electrical Technician [25.6 h]; Electrical Helper [25.6 h]; Labor [25.6 h] | 57,475.1 | Z A |
| SDR-2-CON-CC-ZA-1570 |  | Industrial Rack-Mount Managed Modular Gigabit Ethernet PoE Switch (24-Port) for outdoor application | 8d | 2027-02-15 | 2027-02-24 | SDR-2-CON-CC-ZA-1560 FS+1d, SDR-2-PRO-MAL-E-1140 |  |  |  |  | 4d | 0d | SIC- Cost [52607.1]; Electrical Forman [51.21 h]; Electrical Technician [51.21 h]; Electrical Helper [51.21 h]; Labor [51.21 h] | 52,607.07 | Z A |
| SDR-2-CON-CC-ZA-1580 |  | SFP 1000Base-X SM | 7d | 2027-02-15 | 2027-02-23 | SDR-2-CON-CC-ZA-1570 SS |  |  |  |  | 4d | 0d | SIC- Cost [8114.69]; Electrical Forman [25.6 h]; Electrical Technician [25.6 h]; Electrical Helper [25.6 h]; Labor [25.6 h] | 8,114.7 | Z A |
| SDR-2-CON-CC-ZA-1590 |  | Professional joystick for accurate control of PTZ and PT Thermal Cameras. | 4d | 2027-02-16 | 2027-02-20 | SDR-2-CON-CC-ZA-1580 SS+1d |  |  |  |  | 4d | 0d | SIC- Cost [21043.1]; Electrical Forman [25.6 h]; Electrical Technician [25.6 h]; Electrical Helper [25.6 h]; Labor [25.6 h] | 21,043.1 | Z A |
| SDR-2-CON-CC-ZA-1600 |  | Fiber patch panel including all related accessories | 7d | 2027-02-17 | 2027-02-25 | SDR-2-CON-CC-ZA-1590 SS+1d |  |  |  |  | 4d | 0d | SIC- Cost [11072.2]; Electrical Forman [25.6 h]; Electrical Technician [25.6 h]; Electrical Helper [25.6 h]; Labor [25.6 h] | 11,072.18 | Z A |
| SDR-2-CON-CC-ZA-1610 |  | UPS 5000VA to power for all servers, monitor, and switch in the cabinet | 4d | 2027-02-17 | 2027-02-21 | SDR-2-CON-CC-ZA-1600 SS, SDR-2-PRO-MAL-E-1190 |  |  |  |  | 4d | 0d | SIC- Cost [25601.5]; Electrical Forman [25.6 h]; Electrical Technician [25.6 h]; Electrical Helper [25.6 h]; Labor [25.6 h] | 25,601.51 | Z A |
| SDR-2-CON-CC-ZA-1620 |  | Outdoor Carrier Class Shielded Ethernet Cable for P-to-P access points 305 meter | 7d | 2027-02-17 | 2027-02-25 | SDR-2-CON-CC-ZA-1610 SS |  |  |  |  | 25d | 0d | SIC- Cost [25851.3]; Electrical Forman [25.6 h]; Electrical Technician [25.6 h]; Electrical Helper [25.6 h]; Labor [25.6 h] | 25,851.34 | Z A |
|  | 6 | **Licenses,Documentation,Testing and Training** |  | 2027-02-21 | 2027-02-28 |  |  |  |  |  |  |  |  |  |  |
| SDR-2-CON-CC-ZA-1630 |  | VMS Lifetime Licenses | 6d | 2027-02-21 | 2027-02-28 | SDR-2-CON-CC-ZA-1590 |  |  |  |  | 52d | 0d | SIC- Cost [294321]; Electrical Forman [25.6 h]; Electrical Technician [25.6 h]; Electrical Helper [25.6 h]; Labor [25.6 h] | 294,321.12 | Z A |
| SDR-2-CON-CC-ZA-1640 |  | Camera-Interlink License | 6d | 2027-02-21 | 2027-02-28 | SDR-2-CON-CC-ZA-1630 SS, SDR-2-CON-SL-ZA-1400 |  |  |  |  | 52d | 0d | SIC- Cost [43876.9]; Electrical Forman [25.6 h]; Electrical Technician [25.6 h]; Electrical Helper [25.6 h]; Labor [25.6 h] | 43,876.88 | Z A |
| SDR-2-CON-CC-ZA-1650 |  | Video analytics license package | 4d | 2027-02-21 | 2027-02-25 | SDR-2-CON-SL-ZA-3170, SDR-2-CON-SL-ZA-3090, SDR-2-CON-CC-ZA-1640 SS |  |  |  |  | 52d | 0d | SIC- Cost [511939]; Electrical Forman [25.6 h]; Electrical Technician [25.6 h]; Electrical Helper [25.6 h]; Labor [25.6 h] | 511,939.43 | Z A |
| SDR-2-CON-CC-ZA-1660 |  | Video analytics license for ANPR | 4d | 2027-02-21 | 2027-02-25 | SDR-2-CON-CC-ZA-1650 SS |  |  |  |  | 52d | 47d | SIC- Cost [192385]; Electrical Forman [25.6 h]; Electrical Technician [25.6 h]; Electrical Helper [25.6 h]; Labor [25.6 h] | 192,384.75 | Z A |

| ID | WBS | Activity | Duration | Start | Finish | Predecessors | Complete | Remaining | Planned start | Planned finish | Total float | Free float | Resources | Cost | ZONE G |
| --- | --- | --- | --- | --- | --- | --- | --- | --- | --- | --- | --- | --- | --- | --- | --- |
|  | ZG | **ZONE G** |  | 2026-07-30 | 2027-04-21 |  |  |  |  |  |  |  |  |  |  |
|  | 1 | **Poles 1st and 2nd Fix Works** |  | 2026-07-30 | 2026-11-18 |  |  |  |  |  |  |  |  |  |  |
|  | 1 | **Excavation** |  | 2026-07-30 | 2026-11-01 |  |  |  |  |  |  |  |  |  |  |
| SDR-2-CON-CC-ZA-1670 |  | Excavation 1Sst & 2nd Fix Works | 7d | 2026-07-30 A | 2026-11-01 | SDR-2-CON-MV-ZA-1000 FF | 50% | 1d | 2026-09-02 | 2026-09-09 | 7d | 0d | SIC- Cost [48735]; Labor [133.75 h]; Surveyor [66.88 h] | 14,989.69 | Z G |
|  | 2 | **Install Footings** |  | 2026-09-03 | 2026-11-01 |  |  |  |  |  |  |  |  |  |  |
| SDR-2-CON-CC-ZA-1700 |  | Install Footings | 7d | 2026-09-03 A | 2026-11-01 | SDR-2-CON-CC-ZA-1670 FF | 30% | 1d | 2026-09-10 | 2026-09-17 | 7d | 0d | SIC- Cost [48735]; Electrical Forman [143.3 h]; Electrical Technician [47.77 h]; Electrical Helper [191.07 h]; Labor [286.61 h] | 14,989.69 | Z G |
|  | 3 | **Backfilling** |  | 2026-11-02 | 2026-11-09 |  |  |  |  |  |  |  |  |  |  |
| SDR-2-CON-CC-ZA-1720 |  | Backfilling 1Sst & 2nd Fix Works | 7d | 2026-11-02 | 2026-11-09 | SDR-2-CON-CC-ZA-1700 |  |  |  |  | 7d | 0d | SIC- Cost; Electrical Forman [67.9 h]; Electrical Technician [67.9 h]; Electrical Helper [67.9 h]; Labor [67.9 h] | 14,989.69 | Z G |
|  | 4 | **Install pole** |  | 2026-11-10 | 2026-11-18 |  |  |  |  |  |  |  |  |  |  |
| SDR-2-CON-CC-ZA-1730 |  | Install Pole | 8d | 2026-11-10 | 2026-11-18 | SDR-2-CON-CC-ZA-1720 |  |  |  |  | 7d | 0d | SIC- Cost; Electrical Forman [57.32 h]; Electrical Technician [85.98 h]; Electrical Helper [57.32 h]; Labor [57.32 h]; Excavator [6 h]; Excavator Operator [57.32 h] | 104,927.81 | Z G |
|  | 2 | **25m Pole Package** |  | 2026-09-03 | 2027-02-10 |  |  |  |  |  |  |  |  |  |  |
|  | 1 | **Excavation** |  | 2026-09-03 | 2026-11-18 |  |  |  |  |  |  |  |  |  |  |
| SDR-2-CON-CC-ZA-1750 |  | 25 Meters Pole Excavation | 20d | 2026-09-03 A | 2026-11-18 | SDR-2-CON-CC-ZA-1730 FF | 50% | 5d | 2026-10-07 | 2026-10-29 | 7d | 0d | SIC- Cost; Electrical Forman [67.9 h]; Electrical Technician [67.9 h]; Electrical Helper [67.9 h]; Labor [191.07 h]; Excavator [12 h]; Excavator Operator [67.9 h] | 99,411 | Z G |
|  | 2 | **Install Footings** |  | 2026-11-19 | 2026-12-13 |  |  |  |  |  |  |  |  |  |  |
| SDR-2-CON-CC-ZA-1760 |  | 25 Meters pole installation Footings | 21d | 2026-11-19 | 2026-12-13 | SDR-2-CON-CC-ZA-1750 |  |  |  |  | 7d | 0d | SIC- Cost; Electrical Forman [67.9 h]; Electrical Technician [67.9 h]; Electrical Helper [67.9 h]; Labor [67.9 h] | 99,411 | Z G |
|  | 3 | **Backfilling** |  | 2026-12-14 | 2027-01-05 |  |  |  |  |  |  |  |  |  |  |
| SDR-2-CON-CC-ZA-1770 |  | 25 Meters pole Backfilling | 20d | 2026-12-14 | 2027-01-05 | SDR-2-CON-CC-ZA-1760 |  |  |  |  | 7d | 0d | SIC- Cost; Electrical Forman [67.9 h]; Electrical Technician [67.9 h]; Electrical Helper [382.14 h]; Labor [67.9 h] | 99,411 | Z G |
|  | 4 | **Install pole** |  | 2027-01-18 | 2027-02-10 |  |  |  |  |  |  |  |  |  |  |
| SDR-2-CON-CC-ZA-1780 |  | 25 Meters pole installation | 21d | 2027-01-18 | 2027-02-10 | SDR-2-CON-CC-ZA-1770 FS+10d |  |  |  |  | 7d | 0d | SIC- Cost; Electrical Forman [67.9 h]; Electrical Technician [67.9 h]; Electrical Helper [67.9 h]; Labor [67.9 h] | 695,877.04 | Z G |
|  | 3 | **7m Pole Package** |  | 2026-09-03 | 2027-03-29 |  |  |  |  |  |  |  |  |  |  |
|  | 1 | **Excavation** |  | 2026-09-03 | 2026-11-18 |  |  |  |  |  |  |  |  |  |  |
| SDR-2-CON-CC-ZA-1790 |  | 7m Meters Pole Excavation | 20d | 2026-09-03 A | 2026-11-18 | SDR-2-CON-CC-ZA-1750 FF | 50% | 5d | 2026-10-07 | 2026-10-29 | 9d | 0d | SIC- Cost; Electrical Forman [95.54 h]; Electrical Technician [47.77 h]; Electrical Helper [47.77 h]; Labor [67.9 h]; Excavator [12 h]; Excavator Operator [67.9 h] | 47,581.15 | Z G |
|  | 2 | **Install Footings** |  | 2026-11-19 | 2026-12-12 |  |  |  |  |  |  |  |  |  |  |
| SDR-2-CON-CC-ZA-1800 |  | 7m Meters pole installation Footings | 20d | 2026-11-19 | 2026-12-12 | SDR-2-CON-CC-ZA-1790 |  |  |  |  | 41d | 0d | SIC- Cost; Electrical Forman [95.54 h]; Electrical Technician [95.54 h]; Electrical Helper [67.9 h]; Labor [67.9 h] | 47,581.15 | Z G |

| ID | WBS | Activity | Duration | Start | Finish | Predecessors | Complete | Remaining | Planned start | Planned finish | Total float | Free float | Resources | Cost | ZONE G |
| --- | --- | --- | --- | --- | --- | --- | --- | --- | --- | --- | --- | --- | --- | --- | --- |
|  | 3 | **Backfilling** |  | 2026-12-13 | 2027-01-04 |  |  |  |  |  |  |  |  |  |  |
| SDR-2-CON-CC-ZA-1810 |  | 7m Meters pole Backfilling | 20d | 2026-12-13 | 2027-01-04 | SDR-2-CON-CC-ZA-1800 |  |  |  |  | 41d | 35d | SIC- Cost; Electrical Forman [67.9 h]; Electrical Technician [47.77 h]; Electrical Helper [67.9 h]; Labor [67.9 h]; Excavator [6 h]; Excavator Operator [95.54 h] | 47,581.15 | Z G |
|  | 4 | **Install pole** |  | 2027-03-01 | 2027-03-29 |  |  |  |  |  |  |  |  |  |  |
| SDR-2-CON-CC-ZA-1820 |  | 7 Meters pole Installation | 21d | 2027-03-01 | 2027-03-29 | SDR-2-CON-SL-ZA-3050 SS, SDR-2-CON-SL-ZA-3010, SDR-2-CON-SL-ZA-2970, SDR-2-CON-SL-ZA-1400, SDR-2-CON-CC-ZA-1810 FS+11d |  |  |  |  | 6d | 0d | SIC- Cost; Electrical Forman [67.9 h]; Electrical Technician [67.9 h]; Electrical Helper [67.9 h]; Labor [67.9 h] | 333,068.03 | Z G |
|  | 4 | **35m Pole Package** |  | 2026-09-03 | 2027-01-17 |  |  |  |  |  |  |  |  |  |  |
|  | 1 | **Excavation** |  | 2026-09-03 | 2026-11-18 |  |  |  |  |  |  |  |  |  |  |
| SDR-2-CON-CC-ZA-1830 |  | 35m Meters Pole Excavation | 21d | 2026-09-03 A | 2026-11-18 | SDR-2-CON-CC-ZA-1790 FF | 50% | 6d | 2026-10-31 | 2026-11-23 | 28d | 0d | SIC- Cost; Electrical Forman [13.58 h]; Electrical Technician [13.58 h]; Electrical Helper [13.58 h]; Labor [13.58 h]; Excavator [6 h]; Excavator Operator [13.58 h] | 20,773.73 | Z G |
|  | 2 | **Install Footings** |  | 2026-11-19 | 2026-12-12 |  |  |  |  |  |  |  |  |  |  |
| SDR-2-CON-CC-ZA-1840 |  | 35m Meters pole installation Footings | 20d | 2026-11-19 | 2026-12-12 | SDR-2-CON-CC-ZA-1830 |  |  |  |  | 28d | 0d | SIC- Cost; Electrical Forman [13.58 h]; Electrical Technician [13.58 h]; Electrical Helper [13.58 h]; Labor [13.58 h] | 20,773.73 | Z G |
|  | 3 | **Backfilling** |  | 2026-11-23 | 2026-12-15 |  |  |  |  |  |  |  |  |  |  |
| SDR-2-CON-CC-ZA-1850 |  | 35m Meters pole Backfilling | 20d | 2026-11-23 | 2026-12-15 | SDR-2-CON-CC-ZA-1840 SS+3d |  |  |  |  | 28d | 0d | SIC- Cost; Electrical Forman [13.58 h]; Electrical Technician [13.58 h]; Electrical Helper [13.58 h]; Labor [13.58 h]; Excavator [6 h]; Excavator Operator [13.58 h] | 20,773.73 | Z G |
|  | 4 | **Install pole** |  | 2026-12-27 | 2027-01-17 |  |  |  |  |  |  |  |  |  |  |
| SDR-2-CON-CC-ZA-1860 |  | 35 Meters pole Installation | 19d | 2026-12-27 | 2027-01-17 | SDR-2-CON-CC-ZA-1850 FS+9d |  |  |  |  | 28d | 0d | SIC- Cost; Electrical Forman [13.58 h]; Electrical Technician [13.58 h]; Electrical Helper [13.58 h]; Labor [13.58 h] | 145,416.12 | Z G |
|  | 5 | **Control Room** |  | 2026-11-19 | 2027-01-17 |  |  |  |  |  |  |  |  |  |  |
| SDR-2-CON-CC-ZG-1500 |  | Existing Control Room Preparation to accomodate the new equipments | 4d | 2026-11-19 | 2026-11-23 | SDR-2-CON-CC-ZA-1790 |  |  |  |  | 10d | 0d | SIC- Cost [60670]; Electrical Forman [76.43 h]; Electrical Technician [85.98 h]; Electrical Helper [67.9 h]; Labor [95.54 h] | 60,670 | Z G |
| SDR-2-CON-CC-ZG-1540 |  | Workstation | 12d | 2026-11-19 | 2026-12-02 | SDR-2-CON-CC-ZA-1790 |  |  |  |  | 9d | 0d | SIC- Cost; Electrical Forman [13.58 h]; Electrical Technician [13.58 h]; Electrical Helper [13.58 h]; Labor [13.58 h] | 9,662.4 | Z G |
| SDR-2-CON-CC-ZG-1550 |  | Professional LED screen 32 inch for workstations | 4d | 2026-11-19 | 2026-11-23 | SDR-2-CON-CC-ZG-1540 SS |  |  |  |  | 9d | 0d | SIC- Cost; Electrical Forman [13.58 h]; Electrical Technician [13.58 h]; Electrical Helper [13.58 h]; Labor [13.58 h] | 7,020.93 | Z G |
| SDR-2-CON-CC-ZG-1510 |  | VMS Server | 5d | 2026-11-24 | 2026-11-29 | SDR-2-CON-CC-ZG-1500 |  |  |  |  | 10d | 0d | SIC- Cost; Electrical Forman [95.54 h]; Electrical Technician [119.42 h]; Electrical Helper [67.9 h]; Labor [67.9 h] | 82,777.39 | Z G |
| SDR-2-CON-CC-ZG-1560 |  | Professional 55" video wall cube | 4d | 2026-11-24 | 2026-11-28 | SDR-2-CON-CC-ZG-1550 |  |  |  |  | 9d | 0d | SIC- Cost; Electrical Forman [13.58 h]; Electrical Technician [13.58 h]; Electrical Helper [13.58 h]; Labor [13.58 h] | 24,632.19 | Z G |
| SDR-2-CON-CC-ZG-1570 |  | Industrial Rack-Mount Managed Modular Gigabit Ethernet PoE Switch (24-Port) for outdoor application | 9d | 2026-11-26 | 2026-12-06 | SDR-2-CON-CC-ZG-1560 SS+2d |  |  |  |  | 9d | 0d | SIC- Cost; Electrical Forman [13.58 h]; Electrical Technician [13.58 h]; Electrical Helper [13.58 h]; Labor [13.58 h] | 22,545.9 | Z G |
| SDR-2-CON-CC-ZG-1580 |  | SFP 1000Base-X SM | 4d | 2026-11-26 | 2026-11-30 | SDR-2-CON-CC-ZG-1570 SS |  |  |  |  | 9d | 0d | SIC- Cost; Electrical Forman [13.58 h]; Electrical Technician [13.58 h]; Electrical Helper [13.58 h]; Labor [13.58 h] | 3,477.73 | Z G |
| SDR-2-CON-CC-ZG-1520 |  | Surveillance-optimized server for recording CCTV support simultaneous cameras stream and recording at high resolution | 4d | 2026-11-30 | 2026-12-03 | SDR-2-CON-CC-ZG-1510 |  |  |  |  | 10d | 0d | SIC- Cost; Electrical Forman [76.43 h]; Electrical Technician [95.54 h]; Electrical Helper [114.64 h]; Labor [67.9 h] | 154,818.67 | Z G |
| SDR-2-CON-CC-ZG-1590 |  | Professional joystick for accurate control of PTZ and PT Thermal Cameras. | 4d | 2026-12-01 | 2026-12-05 | SDR-2-CON-CC-ZG-1580 |  |  |  |  | 9d | 0d | SIC- Cost; Electrical Forman [13.58 h]; Electrical Technician [13.58 h]; Electrical Helper [13.58 h]; Labor [13.58 h] | 9,018.48 | Z G |
| SDR-2-CON-CC-ZG-1530 |  | Video analytic computing hardware | 4d | 2026-12-05 | 2026-12-08 | SDR-2-CON-CC-ZG-1520 |  |  |  |  | 17d | 0d | SIC- Cost; Electrical Forman [95.54 h]; Electrical Technician [67.9 h]; Electrical Helper [67.9 h]; Labor [67.9 h] | 115,948.81 | Z G |
| SDR-2-CON-CC-ZG-1600 |  | Fiber patch panel including all related accessories | 4d | 2026-12-06 | 2026-12-09 | SDR-2-CON-CC-ZG-1590 |  |  |  |  | 9d | 0d | SIC- Cost [2]; Electrical Forman [13.58 h]; Electrical Technician [13.58 h]; Electrical Helper [13.58 h]; Labor [13.58 h] | 4,745.22 | Z G |
| SDR-2-CON-CC-ZG-1610 |  | UPS 5000VA to power for all servers, monitor, and switch in the cabinet | 6d | 2026-12-12 | 2026-12-17 | SDR-2-CON-CC-ZG-1600 SS+5d, SDR-2-CON-CC-ZG-1520 FS+5d |  |  |  |  | 9d | 0d | SIC- Cost; Electrical Forman [13.58 h]; Electrical Technician [13.58 h]; Electrical Helper [13.58 h]; Labor [13.58 h] | 10,972.07 | Z G |
| SDR-2-CON-CC-ZG-1620 |  | Outdoor Carrier Class Shielded Ethernet Cable for P-to-P access points 305 meter | 4d | 2027-01-13 | 2027-01-17 | SDR-2-CON-CC-ZG-1610 SS+2d, SDR-2-CON-CC-ZA-1860 FF, SDR-2-CON-CC-ZG-1530 FS+6d, SDR-2-CON-CC-ZG-1520 |  |  |  |  | 28d | 0d | SIC- Cost; Electrical Forman [67.9 h]; Electrical Technician [66.88 h]; Electrical Helper [67.9 h]; Labor [67.9 h] | 11,079.15 | Z G |

| ID | WBS | Activity | Duration | Start | Finish | Predecessors | Total float | Free float | Resources | Cost | ZONE G |
| --- | --- | --- | --- | --- | --- | --- | --- | --- | --- | --- | --- |
|  | 6 | **Licenses,Documentation,Testing and Training** |  | 2026-12-09 | 2027-04-21 |  |  |  |  |  |  |
| SDR-2-CON-CC-ZG-1630 |  | VMS Lifetime Licenses | 2d | 2026-12-09 | 2026-12-10 | SDR-2-CON-CC-ZG-1530 | 17d | 0d | SIC- Cost [126138]; Electrical Forman [19.11 h]; Electrical Technician [19.11 h]; Electrical Helper [38.21 h]; Labor [38.21 h] | 126,137.63 | Z G |
| SDR-2-CON-CC-ZG-1640 |  | Camera-Interlink License | 1d | 2026-12-12 | 2026-12-12 | SDR-2-CON-CC-ZG-1630 | 17d | 0d | SIC- Cost [18804.4]; Electrical Forman [19.11 h]; Electrical Technician [19.11 h]; Electrical Helper [38.21 h]; Labor [38.21 h] | 18,804.37 | Z G |
| SDR-2-CON-CC-ZG-1650 |  | Video analytics license package | 1d | 2026-12-12 | 2026-12-12 | SDR-2-CON-CC-ZG-1640 SS | 17d | 0d | SIC- Cost [219403]; Electrical Forman [19.11 h]; Electrical Technician [19.11 h]; Electrical Helper [47.77 h]; Labor [38.21 h] | 219,402.61 | Z G |
| SDR-2-CON-CC-ZG-1660 |  | Video analytics license for ANPR | 1d | 2027-04-21 | 2027-04-21 | SDR-2-CON-CC-ZG-1650 SS, SDR-2-CON-CC-ZA-1620 FF, SDR-2-CON-CC-ZA-1270 FF, SDR-2-CON-CC-ZA-1110 FF | 9d | 0d | SIC- Cost [82584.8]; Electrical Forman [19.11 h]; Electrical Technician [47.77 h]; Electrical Helper [38.21 h]; Labor [57.32 h] | 82,584.84 | Z G |
|  | TC | **Testing & Commissioning** |  | 2027-02-17 | 2027-07-04 |  |  |  |  |  |  |
|  | 1 | **Civil Works** |  | 2027-05-13 | 2027-05-23 |  |  |  |  |  |  |
| SDR-2-TC-CW-1010 |  | Testing & Commissioning of road works | 4d | 2027-05-13 | 2027-05-23 | SDR-2-CON-RW-ZA-1710, SDR-2-CON-RW-ZA-1130, SDR-2-CON-RW-ZA-1430 | 6d | 5d | SIC- Cost [12.5]; Civil Engineer [1424.06 h]; Civil Forman [1424.06 h] |  |  |
|  | 2 | **Storm Water Drainage Network** |  | 2027-03-08 | 2027-03-25 |  |  |  |  |  |  |
| SDR-2-TC-SWDN-1020 |  | Testing & Commissioning of network work | 12d | 2027-03-08 | 2027-03-25 | SDR-2-CON-ST-ZA-5670, SDR-2-PRO-ST-E-1170, SDR-2-PRO-ST-E-1190, SDR-2-PRO-ST-E-1200, SDR-2-PRO-ST-E-1210, SDR-2-PRO-ST-E-1220, SDR-2-CON-ST-ZA-4020 SS, SDR-2-CON-ST-ZA-4020 | 64d | 57d | SIC- Cost [12.5]; Mechanical Forman [1424.06 h]; Mechanical Engineer [1424.06 h] |  |  |
|  | 3 | **Sewerage Network** |  | 2027-05-09 | 2027-05-27 |  |  |  |  |  |  |
| SDR-2-TC-SN-1030 |  | Testing & Commissioning of Sewage Network | 12d | 2027-05-09 | 2027-05-27 | SDR-2-CON-SE-ZA-2440, SDR-2-CON-SE-ZA-2430, SDR-2-CON-SE-ZA-2690, SDR-2-CON-SE-ZA-1050 FS+10d, SDR-2-CON-SE-ZA-1440, SDR-2-CON-SE-ZA-1430, SDR-2-CON-SE-ZA-1530, SDR-2-CON-SE-ZA-1630, SDR-2-CLO-AS-E-1010, SDR-2-CON-SE-ZA-1540 | 20d | 19d | SIC- Cost [5]; Civil Forman [1424.06 h]; Architecture [1424.06 h] |  |  |
|  | 4 | **TSE Network** |  | 2027-06-20 | 2027-07-04 |  |  |  |  |  |  |
| SDR-2-TC-TSE-1040 |  | Testing & Commissioning of TSE Network | 13d | 2027-06-20 | 2027-07-04 | SDR-2-CON-TS-ZA-2640, SDR-2-CON-TS-ZA-2090, SDR-2-CON-TS-ZA-2290, SDR-2-CON-TS-ZA-1930, SDR-2-CON-TS-ZA-1950, SDR-2-CON-TS-ZA-2740, SDR-2-CON-TS-ZA-1070 FF, SDR-2-CON-TS-ZA-2840, SDR-2-CON-TS-ZA-1990, SDR-2-CON-TS-ZA-2390, SDR-2-CON-TS-ZA-2440, SDR-2-CON-TS-ZA-2940, SDR-2-CON-TS-ZA-3040, SDR-2-CON-TS-ZA-2540, SDR-2-CON-TS-ZA-3140, SDR-2-CON-TS-ZA-2540 FF, SDR-2-CON-TS-ZA-2540 SS, SDR-2-CON-TS-ZA-1060 FS+8.5d, SDR-2-TC-SN-1030, SDR-2-CON-TS-ZA-2260, SDR-2-CON-TS-ZA-2590, SDR-2-CON-TS-ZA-3090, SDR-2-CON-TS-ZA-2990, SDR-2-CON-TS-ZA-2490, SDR-2-CON-TS-ZA-2360, SDR-2-CON-TS-ZA-3190, SDR-2-CON-TS-ZA-2190, SDR-2-CON-TS-ZA-2140, SDR-2-CON-TS-ZA-1970, SDR-2-CON-TS-ZA-2890, SDR-2-CON-TS-ZA-2790, SDR-2-CON-TS-ZA-2690, SDR-2-CON-TS-ZA-2090 SS, SDR-2-CON-TS-ZA-1070, SDR-2-CON-TS-ZA-1910 | 1d |  | SIC- Cost [15]; Mechanical Engineer [2848.11 h] |  |  |
|  | 5 | **Portable Water** |  | 2027-06-19 | 2027-06-28 |  |  |  |  |  |  |
| SDR-2-TC-PW-1050 |  | Testing & Commissioning of Potable Network | 9d | 2027-06-19 | 2027-06-28 | SDR-2-CON-PW-ZA-2650, SDR-2-CON-PW-ZA-1070 SS, SDR-2-CON-PW-ZA-2320, SDR-2-CON-PW-ZA-2620, SDR-2-CON-PW-ZA-3200, SDR-2-CON-PW-ZA-3100, SDR-2-CON-PW-ZA-3000, SDR-2-CON-PW-ZA-3700, SDR-2-CON-PW-ZA-2520, SDR-2-CON-PW-ZA-2420, SDR-2-CON-PW-ZA-2900, SDR-2-CON-PW-ZA-3650, SDR-2-CON-PW-ZA-3550, SDR-2-CON-PW-ZA-3450, SDR-2-CON-PW-ZA-3350, SDR-2-CON-PW-ZA-3250, SDR-2-CON-PW-ZA-2800, SDR-2-CON-PW-ZA-2700, SDR-2-CON-PW-ZA-1070, SDR-2-CON-PW-ZA-2750, SDR-2-CON-PW-ZA-2250, SDR-2-CON-PW-ZA-3300, SDR-2-CON-PW-ZA-2550 | 2d | 0d | SIC- Cost [12]; Mechanical Forman [1424.06 h]; Mechanical Engineer [1424.06 h] |  |  |
|  | 6 | **Electrical Works** |  | 2027-04-22 | 2027-04-29 |  |  |  |  |  |  |
| SDR-2-TC-EW-1060 |  | Testing & Commissioning of Electrical Network | 7d | 2027-04-22 | 2027-04-29 | SDR-2-CON-SL-ZA-2930, SDR-2-CON-SL-ZA-2970, SDR-2-CON-CC-ZA-1820, SDR-2-CON-CC-ZG-1660 | 15d | 0d | SIC- Cost [12]; Electrical Engineer [2848.11 h] |  |  |
|  | 7 | **Landscape & Irrigation Works** |  | 2027-06-19 | 2027-06-24 |  |  |  |  |  |  |
| SDR-2-TC-LIW-1070 |  | Testing & Commissioning of Landscape & Irrigation Network | 6d | 2027-06-19 | 2027-06-24 | SDR-2-TC-CCTV-1080, SDR-2-CON-IR-ZA-1010 SS | 9d |  | SIC- Cost [11]; Mechanical Engineer [2848.11 h] |  |  |
|  | 8 | **CCTV Works** |  | 2027-02-17 | 2027-03-01 |  |  |  |  |  |  |
| SDR-2-TC-CCTV-1080 |  | Testing & Commissioning of medium voltage works | 10d | 2027-02-17 | 2027-03-01 | SDR-2-CON-CC-ZA-1860, SDR-2-CON-CC-ZA-1610 SS, SDR-2-CON-CC-ZG-1520 | 4d | 0d | SIC- Cost [12.5]; Electrical Forman [2848.11 h] |  |  |
|  | CO | **Close Out** |  | 2027-04-22 | 2027-07-05 |  |  |  |  |  |  |
|  | 1 | **As Built Drawings** |  | 2027-04-22 | 2027-06-10 |  |  |  |  |  |  |
|  | 1 | **Civil** |  | 2027-04-27 | 2027-05-10 |  |  |  |  |  |  |
| SDR-2-CLO-AS-C-1000 |  | Civil As-Built Drawing Submission | 7d | 2027-04-27 | 2027-05-04 | SDR-2-CON-RW-ZA-1710, SDR-2-CON-CC-ZG-1660, SDR-2-TC-CCTV-1080 SS, SDR-2-CON-CC-ZA-1660, SDR-2-CON-CC-ZA-1820, SDR-2-CON-CC-ZA-1780, SDR-2-CON-TE-ZA-4530, SDR-2-CON-TE-ZA-4540, SDR-2-CON-TE-ZA-4440, SDR-2-CON-TE-ZA-4450, SDR-2-CON-TE-ZA-4350, SDR-2-CON-TE-ZA-4360, SDR-2-CON-TE-ZA-4260, SDR-2-CON-TE-ZA-4270, SDR-2-CON-MV-ZA-1340, SDR-2-CON-MV-ZA-1300, SDR-2-CON-SL-ZA-3580, SDR-2-CON-SL-ZA-3550, SDR-2-CON-SL-ZA-3520, SDR-2-CON-SL-ZA-3490, SDR-2-CON-SL-ZA-3460, SDR-2-CON-SL-ZA-3410, SDR-2-CON-SL-ZA-3370, SDR-2-CON-SL-ZA-3330, SDR-2-CON-SL-ZA-3290, SDR-2-CON-SL-ZA-3250, SDR-2-CON-TE-ZA-4170, SDR-2-CON-TE-ZA-4180, SDR-2-CON-TE-ZA-4080, SDR-2-CON-TE-ZA-4090, SDR-2-CON-TE-ZA-3990, SDR-2-CON-TE-ZA-4000, SDR-2-CON-TE-ZA-3900, SDR-2-CON-TE-ZA-3910, SDR-2-CON-TE-ZA-3810, SDR-2-CON-TE-ZA-3820, SDR-2-CON-TE-ZA-3720, SDR-2-CON-TE-ZA-3730, SDR-2-CON-TE-ZA-3630, SDR-2-CON-TE-ZA-3640, SDR-2-CON-TE-ZA-3540, SDR-2-CON-TE-ZA-3550, SDR-2-CON-TE-ZA-3450, SDR-2-CON-TE-ZA-3460, SDR-2-CON-TE-ZA-3360, SDR-2-CON-TE-ZA-3370, SDR-2-CON-TE-ZA-3270, SDR-2-CON-TE-ZA-3280, SDR-2-CON-TE-ZA-1060, SDR-2-CON-TE-ZA-1840, SDR-2-CON-MV-ZA-1260, SDR-2-CON-MV-ZA-1220, SDR-2-CON-MV-ZA-1180, SDR-2-CON-MV-ZA-1100, SDR-2-CON-SL-ZA-2860, SDR-2-CON-SL-ZA-2840, SDR-2-CON-SL-ZA-2820, SDR-2-CON-SL-ZA-2800, SDR-2-CON-SL-ZA-2780, SDR-2-CON-SL-ZA-2930, SDR-2-CON-SL-ZA-3210, SDR-2-CON-SL-ZA-3170, SDR-2-CON-SL-ZA-3130, SDR-2-CON-SL-ZA-3090, SDR-2-CON-SL-ZA-3050, SDR-2-CON-SL-ZA-3010, SDR-2-CON-SL-ZA-2970, SDR-2-CON-SL-ZA-1400, SDR-2-CON-SL-ZA-2890, SDR-2-CON-SL-ZA-1100 | 5d | 0d | Civil Engineer [1035.67 h]; Civil Drafman [1035.67 h] |  |  |
| SDR-2-CLO-AS-C-1010 |  | Civil As-Built Drawing Approvals | 5d | 2027-05-05 | 2027-05-10 | SDR-2-TC-EW-1060 SS, SDR-2-CLO-AS-C-1000, SDR-2-CON-CC-ZG-1660 | 5d | 0d |  |  |  |

| ID | WBS | Activity | Duration | Start | Finish | Predecessors | Total float | Free float | Resources |
| --- | --- | --- | --- | --- | --- | --- | --- | --- | --- |
|  | 2 | **Mechanical** |  | 2027-05-24 | 2027-06-10 |  |  |  |  |
| SDR-2-CLO-AS-M-1000 |  | Mechanical As-Built Drawing Submission | 8d | 2027-05-24 | 2027-06-01 | SDR-2-CON-PW-ZA-3350, SDR-2-CON-PW-ZA-2320, SDR-2-TC-SWDN-1020 SS, SDR-2-CLO-AS-E-1010 SS+7d | 7d | 0d | Mechanical Drafman [1035.67 h]; Mechanical Engineer [1035.67 h] |
| SDR-2-CLO-AS-M-1010 |  | Mechanical As-Built Drawing Approvals | 8d | 2027-06-02 | 2027-06-10 | SDR-2-CLO-AS-M-1000, SDR-2-CON-ST-ZA-5480 FS+13d, SDR-2-CON-ST-ZA-4730 FS+3d, SDR-2-CON-ST-ZA-4580 | 7d | 1d |  |
|  | 3 | **Electrical** |  | 2027-04-22 | 2027-05-08 |  |  |  |  |
| SDR-2-CLO-AS-E-1000 |  | Electrical As-Built Drawing Submission | 7d | 2027-04-22 | 2027-04-29 | SDR-2-CON-CC-ZG-1620, SDR-2-TC-EW-1060 SS, SDR-2-CON-ST-ZA-6080, SDR-2-CON-ST-ZA-5630 FS+10d | 15d | 0d | Electrical Drafman [2071.35 h] |
| SDR-2-CLO-AS-E-1010 |  | Electrical As-Built Drawing Approvals | 7d | 2027-05-01 | 2027-05-08 | SDR-2-CLO-AS-E-1000 | 15d | 0d |  |
|  | 2 | **Training and Manuals** |  | 2027-06-13 | 2027-06-28 |  |  |  |  |
| SDR-2-CLO-TM-1000 |  | Training and Manuals | 14d | 2027-06-13 | 2027-06-28 | SDR-2-CLO-AS-M-1010, SDR-2-CLO-AS-E-1010 SS, SDR-2-CON-IR-ZA-2130 FS+1d | 6d | 0d | Civil Engineer [690.45 h]; Mechanical Engineer [690.45 h]; Architecture [690.45 h] |
|  | 3 | **Demobilize Manpower** |  | 2027-06-13 | 2027-06-28 |  |  |  |  |
| SDR-2-CLO-DM-1000 |  | Manpower Demobilize | 14d | 2027-06-13 | 2027-06-28 | SDR-2-CLO-TM-1000 SS | 6d | 0d | Labor [1035.68 h]; Architecture [1035.68 h] |
|  | 4 | **Demobilize Equipment** |  | 2027-06-13 | 2027-06-28 |  |  |  |  |
| SDR-2-CLO-DE-1000 |  | Equipments Demobilize | 14d | 2027-06-13 | 2027-06-28 | SDR-2-CLO-DM-1000 SS | 6d | 0d | Mechanical Forman [1035.69 h]; Helper [1035.69 h] |
|  | 5 | **Removal of Site Offices and Structures** |  | 2027-06-13 | 2027-06-28 |  |  |  |  |
| SDR-2-CLO-RO-1000 |  | Site Office Removal | 14d | 2027-06-13 | 2027-06-28 | SDR-2-CLO-DE-1000 SS | 6d |  | Helper [1035.67 h]; Labor [1035.67 h] |
|  | 6 | **Handover** |  | 2027-06-28 | 2027-07-05 |  |  |  |  |
| SDR-2-CLO-HO-1000 |  | Project Handover | 7d | 2027-06-28 | 2027-07-05 | SDR-2-ENG-APP-M-1010, SDR-2-PREL-1100, SDR-2-CON-SE-ZA-1610, SDR-2-CON-IR-ZA-2980 FF, SDR-2-TC-LIW-1070 FF, SDR-2-CLO-DE-1000 SS, SDR-2-CLO-RO-1000 SS, SDR-2-CON-RW-ZA-1150, SDR-2-CON-RW-ZA-1290, SDR-2-CON-ST-ZA-3310, SDR-2-CON-TS-ZA-1080, SDR-2-CON-TS-ZA-1260, SDR-2-CON-TS-ZA-1710, SDR-2-CON-TS-ZA-1800, SDR-2-CON-TE-ZA-1020, SDR-2-CON-TE-ZA-1060, SDR-2-CON-LS-ZA-1060 SS, SDR-2-CON-CC-ZA-1620, SDR-2-CON-CC-ZA-1660, SDR-2-CON-CC-ZG-1660, SDR-2-TC-CCTV-1080, SDR-2-CON-LS-ZG-1060 SS, SDR-2-CON-PW-ZA-1080, SDR-2-PRO-MAS-C-1100, SDR-2-PRO-MAL-M-1060, SDR-2-PRO-MAL-M-1070, SDR-2-CON-SL-ZA-2690 SS, SDR-2-PRO-MAS-E-1000, SDR-2-PRO-MAL-E-1030, SDR-2-PRO-MAL-E-1130, SDR-2-PRO-MAL-E-1120, SDR-2-CON-CC-ZA-1110 SS, SDR-2-PRO-MAL-E-1170, SDR-2-CON-CC-ZA-1270, SDR-2-CON-CC-ZA-1410 SS, SDR-2-CON-IR-ZA-1030 FF, SDR-2-PRO-MAS-E-1020, SDR-2-CON-SL-ZA-1110, SDR-2-PRO-MAS-C-1080, SDR-2-CON-MV-ZA-1150, SDR-2-PRO-MAL-M-1030, SDR-2-PRO-MAL-M-1040, SDR-2-PRO-MAL-E-1010, SDR-2-PRO-MAL-E-1020, SDR-2-PRO-MAL-E-1180, SDR-2-PRO-MAL-E-1060, SDR-2-CON-RW-ZA-1050, SDR-2-CON-RW-ZA-1200, SDR-2-CON-RW-ZA-1340, SDR-2-CON-RW-ZA-1430, SDR-2-CON-RW-ZA-1480, SDR-2-CON-RW-ZA-1570, SDR-2-CON-RW-ZA-1620, SDR-2-CON-RW-ZA-1710, SDR-2-CON-RW-ZA-1760, SDR-2-CON-RW-ZA-1850, SDR-2-CON-RW-ZA-1900, SDR-2-CON-RW-ZA-1990, SDR-2-CON-RW-ZA-2040, SDR-2-CON-RW-ZA-2130, SDR-2-CON-RW-ZA-2180, SDR-2-CON-RW-ZA-2270, SDR-2-CON-RW-ZA-2320, SDR-2-CON-RW-ZA-2410, SDR-2-CON-RW-ZA-2460, SDR-2-CON-RW-ZA-2550, SDR-2-CON-RW-ZA-2600, SDR-2-CON-RW-ZA-2690, SDR-2-CON-RW-ZA-2740, SDR-2-CON-RW-ZA-2830, SDR-2-CON-RW-ZG-1060, SDR-2-CON-RW-ZG-1210, SDR-2-CON-RW-ZG-1310, SDR-2-CON-RW-ZG-1360, SDR-2-CON-RW-ZG-1460, SDR-2-CON-RW-ZG-1510, SDR-2-CON-RW-ZG-1610, SDR-2-CON-RW-ZG-1660, SDR-2-CON-RW-ZG-1760, SDR-2-CON-RW-ZG-1810, SDR-2-CON-RW-ZG-1910, SDR-2-CON-RW-ZG-1960, SDR-2-CON-RW-ZG-2060, SDR-2-CON-RW-ZG-2110, SDR-2-CON-RW-ZG-2210, SDR-2-CON-ST-ZA-3760, SDR-2-CON-ST-ZA-4130, SDR-2-CON-ST-ZA-4280, SDR-2-CON-ST-ZA-4430, SDR-2-CON-ST-ZA-4580, SDR-2-CON-ST-ZA-4730, SDR-2-CON-ST-ZA-4880, SDR-2-CON-ST-ZA-5030, SDR-2-CON-ST-ZA-5070, SDR-2-CON-ST-ZA-5180, SDR-2-CON-ST-ZA-5220, SDR-2-CON-ST-ZA-5930, SDR-2-CON-ST-ZA-5970, SDR-2-CON-ST-ZA-5480, SDR-2-CON-ST-ZA-5630, SDR-2-CON-ST-ZA-6000, SDR-2-CON-ST-ZA-6080, SDR-2-CON-SE-ZA-1440, SDR-2-CON-SE-ZA-1540, SDR-2-CON-SE-ZA-1740, SDR-2-CON-SE-ZA-1840, SDR-2-CON-SE-ZA-1940, SDR-2-CON-SE-ZA-2040, SDR-2-CON-SE-ZA-2140, SDR-2-CON-SE-ZA-2240, SDR-2-CON-SE-ZA-2340, SDR-2-CON-SE-ZA-2440, SDR-2-CON-TS-ZA-1910, SDR-2-CON-TS-ZA-1070, SDR-2-CON-TS-ZA-2260, SDR-2-CON-TS-ZA-2040, SDR-2-CON-TS-ZA-2090, SDR-2-CON-TS-ZA-2690, SDR-2-CON-TS-ZA-2890, SDR-2-CON-TS-ZA-1960, SDR-2-CON-TS-ZA-1970, SDR-2-CON-TS-ZA-2140, SDR-2-CON-TS-ZA-1980, SDR-2-CON-TS-ZA-2190, SDR-2-CON-TS-ZA-3190, SDR-2-CON-TS-ZA-2360, SDR-2-CON-TS-ZA-2490, SDR-2-CON-TS-ZA-2990, SDR-2-CON-TS-ZA-3090, SDR-2-CON-TS-ZA-2590, SDR-2-CON-PW-ZA-2320, SDR-2-CON-PW-ZA-2700, SDR-2-CON-PW-ZA-2800, SDR-2-CON-PW-ZA-3250, SDR-2-CON-PW-ZA-3350, SDR-2-CON-PW-ZA-3450, SDR-2-CON-PW-ZA-3550, SDR-2-CON-PW-ZA-3650, SDR-2-CON-PW-ZA-2900, SDR-2-CON-PW-ZA-2420, SDR-2-CON-PW-ZA-2520, SDR-2-CON-PW-ZA-3700, SDR-2-CON-PW-ZA-3000, SDR-2-CON-PW-ZA-3100, SDR-2-CON-PW-ZA-3200, SDR-2-CON-PW-ZA-2620, SDR-2-CON-SL-ZA-1100, SDR-2-CON-SL-ZA-2890, SDR-2-CON-SL-ZA-1400, SDR-2-CON-SL-ZA-2970, SDR-2-CON-SL-ZA-3010, SDR-2-CON-SL-ZA-3050, SDR-2-CON-SL-ZA-3090, SDR-2-CON-SL-ZA-3130, SDR-2-CON-SL-ZA-3170, SDR-2-CON-SL-ZA-3210, SDR-2-CON-SL-ZA-2930, SDR-2-CON-SL-ZA-2780, SDR-2-CON-SL-ZA-2800, SDR-2-CON-SL-ZA-2820, SDR-2-CON-SL-ZA-2840, SDR-2-CON-SL-ZA-2860, SDR-2-CON-MV-ZA-1100, SDR-2-CON-MV-ZA-1180, SDR-2-CON-MV-ZA-1220, SDR-2-CON-MV-ZA-1260, SDR-2-CON-TE-ZA-1840, SDR-2-CON-TE-ZA-3280, SDR-2-CON-TE-ZA-3270, SDR-2-CON-TE-ZA-3370, SDR-2-CON-TE-ZA-3360, SDR-2-CON-TE-ZA-3460, SDR-2-CON-TE-ZA-3450, SDR-2-CON-TE-ZA-3550, SDR-2-CON-TE-ZA-3540, SDR-2-CON-TE-ZA-3640, SDR-2-CON-TE-ZA-3630, SDR-2-CON-TE-ZA-3730, SDR-2-CON-TE-ZA-3720, SDR-2-CON-TE-ZA-3820, SDR-2-CON-TE-ZA-3810, SDR-2-CON-TE-ZA-3910, SDR-2-CON-TE-ZA-3900, SDR-2-CON-TE-ZA-4000, SDR-2-CON-TE-ZA-3990, SDR-2-CON-TE-ZA-4090, SDR-2-CON-TE-ZA-4080, SDR-2-CON-TE-ZA-4180, SDR-2-CON-TE-ZA-4170, SDR-2-CON-SL-ZA-3250, SDR-2-CON-SL-ZA-3290, SDR-2-CON-SL-ZA-3330, SDR-2-CON-SL-ZA-3370, SDR-2-CON-SL-ZA-3410, SDR-2-CON-SL-ZA-3460, SDR-2-CON-SL-ZA-3490, SDR-2-CON-SL-ZA-3520, SDR-2-CON-SL-ZA-3550, SDR-2-CON-SL-ZA-3580, SDR-2-CON-MV-ZA-1300, SDR-2-CON-MV-ZA-1340, SDR-2-CON-TE-ZA-4270, SDR-2-CON-TE-ZA-4260, SDR-2-CON-TE-ZA-4360, SDR-2-CON-TE-ZA-4350, SDR-2-CON-TE-ZA-4450, SDR-2-CON-TE-ZA-4440, SDR-2-CON-TE-ZA-4540, SDR-2-CON-TE-ZA-4530, SDR-2-CON-IR-ZA-2150 FF, SDR-2-CON-IR-ZA-2190 SS+2d | 0d |  | Civil Engineer [295.91 h]; Civil Forman [295.91 h]; Electrical Forman [295.91 h]; Mechanical Forman [295.91 h]; Helper [295.91 h]; Labor [295.91 h]; Mechanical Engineer [295.91 h] |

## Activity codes

| Code | Value | Meaning |
| --- | --- | --- |
| ROAD WORK | ASP | ASPHALT LAYER 1 |
| ROAD WORK | BAS | BASE COURSE WORKS |
| ROAD WORK | BF | BACKFILLING WORKS |
| ROAD WORK | CUT | EXCAVATION & CUTTING WORKS |
| ROAD WORK | SUB | SUBGRADE WORKS |
| ZONE A | Z A | Zone A |
| ZONE G | Z G | Zone G |
