# JDH1-02-003 - Infrastructure Development For Industrial City 1 In Jeddah - Update - 03.11.2026

Schedule from Primavera P6, 2025-11-19 to 2028-06-03, data date 2026-11-03, costs in USD, A marks actual dates.
Must finish by 2027-11-18

## Calendars

- CON-LEG101 (6 Days Work - 8 Hrs) Calendar: Mon-Thu 07:00-15:00; Fri off; Sat-Sun 07:00-15:00. Exceptions (off unless hours are given): 2025-11-19 to 2025-11-20 7:00-15:00, 2025-11-22 to 2025-11-27 7:00-15:00, 2025-11-29 to 2025-12-04 7:00-15:00, 2025-12-06 to 2025-12-11 7:00-15:00, 2025-12-13 to 2025-12-18 7:00-15:00, 2025-12-20 to 2025-12-25 7:00-15:00, 2025-12-27 to 2026-01-01 7:00-15:00, 2026-01-03 to 2026-01-08 7:00-15:00, 2026-01-10 to 2026-01-15 7:00-15:00, 2026-01-17 to 2026-01-22 7:00-15:00, 2026-01-24 to 2026-01-29 7:00-15:00, 2026-01-31 to 2026-02-05 7:00-15:00, 2026-02-07 to 2026-02-12 7:00-15:00, 2026-02-14 to 2026-02-19 7:00-15:00, 2026-02-21 7:00-15:00, 2026-02-22, 2026-02-23 to 2026-02-26 7:00-15:00, 2026-02-28 to 2026-03-05 7:00-15:00, 2026-03-07 to 2026-03-12 7:00-15:00, 2026-03-14 to 2026-03-19 7:00-15:00, 2026-03-21 to 2026-03-24, 2026-03-25 to 2026-03-26 7:00-15:00, 2026-03-28 to 2026-04-02 7:00-15:00, 2026-04-04 to 2026-04-09 7:00-15:00, 2026-04-11 to 2026-04-16 7:00-15:00, 2026-04-18 to 2026-04-23 7:00-15:00, 2026-04-25 to 2026-04-30 7:00-15:00, 2026-05-02 to 2026-05-07 7:00-15:00, 2026-05-09 to 2026-05-14 7:00-15:00, 2026-05-16 to 2026-05-21 7:00-15:00, 2026-05-23 to 2026-05-26 7:00-15:00, 2026-05-27 to 2026-05-28, 2026-05-30 to 2026-05-31, 2026-06-01 to 2026-06-04 7:00-15:00, 2026-06-06 to 2026-06-11 7:00-15:00, 2026-06-13 to 2026-06-18 7:00-15:00, 2026-06-20 to 2026-06-25 7:00-15:00, 2026-06-27 to 2026-06-30 7:00-15:00, 2026-09-22 7:00-15:00, 2026-09-23, 2027-02-09 to 2027-02-11, 2027-02-13, 2027-02-22, 2027-05-15 to 2027-05-18, 2027-09-23.

## Resources

| Resource | Group | Unit | Rate |
| --- | --- | --- | --- |
| Supply and installation of Decoder cables 12 AWG between valves and controllers, The cables shall be pulled through 32? UPVC conduit and inspection 10" round valve box every 100 meters, as per standard specification and drawings | material |  | 60 |
| Excavator | equipment |  |  |
| Labor | labor |  |  |
| Skilled Labor | labor |  |  |
| Eq. Operator | labor |  |  |
| Pipe Fitter | labor |  |  |
| "Lean concrete | material |  | 1000 |
| Truck | equipment |  |  |
| Bucket | equipment |  |  |
| Driver | labor |  |  |
| Carpenter | labor |  |  |
| Mason | labor |  |  |
| Engineer & Technician | labor |  |  |
| Cable 13.8 kV (3-C)x 50 mm² CU /XLPE/PVC, Unarmored | material |  | 500 |
| Cable 13.8 kV 3Cx 500 mm² Al XLPE,/LLDPE / Unarmored | material |  | 220 |
| Unit Substation 13.8/0.4 K V, 500kVA ,Including concrete foundations and fencing, According to the specifications and standards of SEC | material |  | 85000 |
| Stranded armored Cables, Copper, 4C,50mm² XLPE /SWA/PVC | material |  | 300 |
| Stranded armored Cables, Copper, 4C,35mm² XLPE/SWA /PVC | material |  | 110 |
| Stranded armored Cables, Copper, 4xC16mm² XLPE /SWA/PVC | material |  | 55 |
| Single Core Cable, Copper 1C,16mm² CU/PVC For Earth | material |  | 25 |
| Single Core Cable, Copper 1C,10mm² CU/PVC For Earth | material |  | 15 |
| Single Core Cable, Copper 1C,25mm² CU/PVC For Earth | material |  | 60 |
| Lighting poles with 1 arm, height of (8 ) meters, including the power distribution box, cables, and RCC foundation. | material |  | 3400 |
| Street Lighting( LED) Luminous efficacy ? 120Lum/w complete with control gear and lamp, (100) WATT. Max. | material |  | 1000 |
| Earthing for Distribution panels,SL feeder pillars, KWH, Unit substations and RMU | material |  | 4000 |
| Supply and installation of KWH meter mounting frame including concrete block wall for KWH meter inculding foundations and finishings according to the standareds and specification of SEC | material |  | 10000 |
| Street Lighting feeder pillars | material |  | 35000 |
| Main 100A MCCB with outgoing | material |  | 20000 |
| Cable Termination for 13.8 kv (3-C)x 50 mm² CU /XLPE/PVC, Unarmored. | material |  | 2000 |
| Cable Termination for 13.8 kv 3Cx 500 mm², Al /XLPE/LLDPE | material |  | 2800 |
| Straight joints cables for 13.8 kv 3Cx 500 mm², Al /XLPE/LLDPE | material |  | 2800 |
| Earthing for Streetlighting feeders for every end pole circuits. | material |  | 2000 |
| Earthing for Industrial switch poles and GSM towers | material |  | 1500 |
| "Excavation for Trench size 90cm wide and 80cm deep | material |  | 40 |
| Duct bank for (1) cables | material |  | 220 |
| Duct bank for (2) cables | material |  | 400 |
| Duct bank for (4) cables | material |  | 650 |
| Duct bank for (3) cables | material |  | 750 |
| Duct bank for (1) cables | material |  | 250 |
| Duct bank for (2) cables | material |  | 400 |
| Public Water - Gate valves, on pipe with diameter 110 mm | material |  | 3000 |
| Public Water - Gate valves, on pipe with diameter 160 mm | material |  | 4500 |
| Public Water - Gate valves, on pipe with diameter 200 mm | material |  | 8000 |
| Public Water - Butterfly valves, on pipe with diameter 400 mm | material |  | 45000 |
| Public Water - Wash out valve, on pipes with diameter 110-400 mm | material |  | 12000 |
| Public Water - Air valve complete with gate valves, on pipes with diameter less than 315 mm. | material |  | 9000 |
| Public Water - Air valve complete with gate valves, on pipes with diameter from 355 to 630 mm | material |  | 15000 |
| Public Water - On 315-400 mm diameter pipeline | material |  | 45000 |
| Public Water - Wash out valve chamber; on 110-400 mm diameter pipeline | material |  | 40000 |
| Public Water - Air valve chamber; on less than 315 mm diameter pipeline | material |  | 40000 |
| Public Water - Air valve chamber; on pipe from 355 to 630 mm | material |  | 75000 |
| Piping TSE Network - Gate valves, on pipe with diameter 250 mm | material |  | 15000 |
| Piping TSE Network - Butterfly valves, on pipe with diameter 315 mm | material |  | 35000 |
| Piping TSE Network - Gate valves, on pipe with diameter 110 mm | material |  | 3000 |
| Piping TSE Network - Gate valves, on pipe with diameter 160 mm | material |  | 4500 |
| Piping TSE Network - Gate valves, on pipe with diameter 200 mm | material |  | 8000 |
| Piping TSE Network - Wash out valve, on pipes with diameter 110-400 mm | material |  | 12000 |
| Piping TSE Network - Air valve complete with gate valves, on pipes with diameter less than 315 mm. | material |  | 9000 |
| Piping TSE Network - On 315-400 mm diameter pipeline | material |  | 45000 |
| Piping TSE Network - Wash out valve chamber; on 110-400 mm diameter pipeline | material |  | 40000 |
| Piping TSE Network - Air valve chamber; on less than 315 mm diameter pipeline | material |  | 40000 |
| Removal of chain link fence | material |  | 35 |
| Removal of concrete fence | material |  | 80 |
| Removal of Electricity distribution panel | material |  | 5000 |
| Demolition of existing structures | material |  | 70 |
| "Reinforced Steel Grade 60 | material |  | 4200 |
| "Lean concrete | material |  | 450 |
| Isolated footings | material |  | 1600 |
| Strip footings | material |  | 1600 |
| Grade beams | material |  | 1600 |
| Columns | material |  | 1700 |
| Retaining Walls | material |  | 1700 |
| "Reinforced concrete Piles | material |  | 4500 |
| "Reinforced concrete of Bridge Sub-structure | material |  | 1500 |
| "Reinforced concrete Bridge Superstructure | material |  | 1500 |
| "Protective Coating for Concrete Surfaces | material |  | 70 |
| "Supply and install cold applied bituminous paint waterproofing for R.C foundation and, as per drawings and specs section: | material |  | 15 |
| Membrane waterproofing for concert in touch with soil and membrane waterproofing for bridge slab (under asphalt ) as per details drawing ST-DWG-6103, including protection board around foundation sides. The cost includes preparation work and cleaning the s | material |  | 120 |
| Aggregate base course | material | M3 | 60 |
| Bituminous base course (Grading I - Class A), including Prime Coat (MC1) according to drawings | material |  | 580 |
| Precast Concrete Kerb, Type K1-A | material |  | 65 |
| Precast Concrete Kerb, Type K4 | material |  | 50 |
| Precast Concrete Kerb, Type K1-B | material |  | 60 |
| Precast Concrete Kerb, Type K NEW (Flushed Kerb) | material |  | 50 |
| Interlocking block pavers for sidewalk/footpath | material |  | 70 |
| Interlocking block pavers for roads/on-street parking | material |  | 80 |
| Retroreflective Plastic Cones | material |  | 500 |
| Retroreflective Thermoplastic white paint | material |  | 45 |
| Retroreflective Thermoplastic yellow paint including Rumble strips | material |  | 45 |
| Traffic signs, ground mounted, Sheet Aluminum, (breakaway)Single post, with all accessories | material |  | 1800 |
| Traffic signs, ground mounted, Sheet Aluminum, (breakaway) Double post with all accessories | material |  | 2500 |
| Traffic signs, ground mounted, Sheet Alumenium, (breakaway) One road sign assembly mounted on two tubular post with all accessories | material |  | 40000 |
| Public Water - 110mm Diameter Depth: 0.00 m - 1.50 m. | material |  | 180 |
| Public Water - 110mm Diameter Depth: 1.51 m - 2.50 m. | material |  | 270 |
| Public Water - 110mm Diameter Depth exceeds 2.50m | material |  | 500 |
| Public Water - 160mm Diameter Depth: 1.51m - 2.50m | material |  | 300 |
| Public Water - 200mm Diameter Depth: 0.00m -1.50m | material |  | 240 |
| Public Water - Concrete encasement, pipe dia 110 mm | material |  | 350 |
| Public Water - 160mm Diameter Depth: 0.00 m - 1.50 m. | material |  | 220 |
| Public Water - 160mm Diameter Depth exceeds 2.50m | material |  | 900 |
| Public Water - 200mm Diameter Depth: 1.51m - 2.50m | material |  | 330 |
| Public Water - 200mm Diameter Depth exceeds 2.50m | material |  | 1200 |
| Public Water - 400mm Diameter Depth: 0.00m -1.50m | material |  | 580 |
| Public Water - 400mm Diameter Depth: 1.51m - 2.50m | material |  | 700 |
| Public Water - 400mm Diameter Depth exceeds 2.50m | material |  | 1500 |
| Piping TSE Network - 200mm Diameter Depth: 2.51m - 3.50m | material |  | 1200 |
| Piping TSE Network - 200mm Diameter Depth exceeds 3.50m | material |  | 1500 |
| Piping TSE Network - 110mm Diameter Depth: 0.00 m - 1.50 m. | material |  | 180 |
| Piping TSE Network - 110mm Diameter Depth: 1.51m - 2.50m | material |  | 270 |
| Piping TSE Network - 110mm Diameter Depth exceeds 2.50m | material |  | 500 |
| Piping TSE Network - 160mm Diameter Depth: 0.00 m - 1.50 m. | material |  | 220 |
| Piping TSE Network - 160mm Diameter Depth: 1.51m - 2.50m | material |  | 300 |
| Piping TSE Network - 160mm Diameter Depth exceeds 2.50m | material |  | 900 |
| Piping TSE Network - 200mm Diameter Depth: 0.00 m - 1.50 m. | material |  | 240 |
| Piping TSE Network - 200mm Diameter Depth: 1.51m - 2.50m | material |  | 330 |
| Piping TSE Network - 250mm Diameter Depth: 0.00 m - 1.50 m. | material |  | 300 |
| Piping TSE Network - 250mm Diameter Depth: 1.51m - 2.50m | material |  | 360 |
| Piping TSE Network - 250mm Diameter Depth exceeds 2.50m | material |  | 1800 |
| Piping TSE Network - 315mm Diameter Depth: 0.00 m - 1.50 m. | material |  | 500 |
| Piping TSE Network - 315mm Diameter Depth: 1.51m - 2.50m | material |  | 550 |
| Piping TSE Network - 315mm Diameter Depth: 2.51m - 3.50m | material |  | 2000 |
| Piping TSE Network - Concrete encasement, pipe dia 110 mm | material |  | 350 |
| Piping TSE Network - 315mm Diameter Depth exceeds 3.50m | material |  | 2500 |
| Sanitary Sewerage 450mm Depth: 3.51m - 4.50m | material |  | 1300 |
| Sanitary Sewerage 450mm Depth exceeds 4.50m | material |  | 2000 |
| Sanitary Sewerage - Concrete encasement pipe dia 200 mm | material |  | 220 |
| Sanitary Sewerage Concrete encasement pipe dia 350 mm | material |  | 500 |
| Sanitary Sewerage 150mm Diameter Depth: 0.00 m - 1.50 m. | material |  | 300 |
| Sanitary Sewerage 150mm Diameter Depth: 1.51m - 2.50m | material |  | 350 |
| Sanitary Sewerage 150mm Diameter Depth exceeds 2.50m | material |  | 800 |
| Sanitary Sewerage 200mm Depth: 0.00 m - 1.50 m. | material |  | 320 |
| Sanitary Sewerage 200mm Depth: 1.51m - 2.50m | material |  | 350 |
| Sanitary Sewerage 200mm Depth: 2.51m - 3.50m | material |  | 450 |
| Sanitary Sewerage 200mm Depth exceeds 3.50m | material |  | 1000 |
| Sanitary Sewerage 300mm Depth: 0.00 m - 1.50 m. | material |  | 500 |
| Sanitary Sewerage 300mm Depth: 1.51m - 2.50m | material |  | 550 |
| Sanitary Sewerage 300mm Depth: 2.51m - 3.50m | material |  | 800 |
| Sanitary Sewerage 300mm Depth exceeds 3.50m | material |  | 1100 |
| Sanitary Sewerage 350mm Depth: 0.00 m - 1.50 m. | material |  | 550 |
| Sanitary Sewerage 350mm Depth: 1.51m - 2.50m | material |  | 600 |
| Sanitary Sewerage 350mm Depth: 2.51m - 3.50m | material |  | 900 |
| Sanitary Sewerage 350mm Depth exceeds 3.50m | material |  | 1200 |
| Sanitary Sewerage 450mm Depth: 0.00 m - 1.50 m. | material |  | 650 |
| Sanitary Sewerage 450mm Depth: 1.51m - 2.50m | material |  | 700 |
| Sanitary Sewerage 450mm Depth: 2.51m - 3.50m | material |  | 950 |
| Sanitary Sewerage MH depth 0.00 m - 1.50 m. | material |  | 16000 |
| Sanitary Sewerage MH depth 1.51 - 2.50 m | material |  | 17000 |
| Sanitary Sewerage MH depth 1.51 - 2.50 m with back drop | material |  | 20000 |
| Sanitary Sewerage MH depth 2.51 - 3.50 m | material |  | 18000 |
| Sanitary Sewerage MH depth 2.51 - 3.50 m with back drop | material |  | 22000 |
| Sanitary Sewerage MH depth 3.51 - 4.50 m | material |  | 26000 |
| Sanitary Sewerage MH depth exceeds 3.50 m with back drop | material |  | 30000 |
| Sanitary Sewerage MH depth exceeds 4.50 m | material |  | 35000 |
| Stormwater Utilities - PVC Pipes - 300 mm Diameter Depth: 0.00 m - 1.50 m. | material |  | 400 |
| Stormwater Utilities - PVC Pipes - 300 mm Diameter Depth: 1.51m - 2.50m | material |  | 450 |
| Stormwater Utilities - PVC Pipes - 300 mm Diameter Depth exceeds 2.50m | material |  | 1000 |
| Stormwater Utilities - PVC Pipes - 400 mm Diameter Depth: 0.00 m - 1.50 m. | material |  | 680 |
| Stormwater Utilities - PVC Pipes - 500 mm Depth: 0.00 m - 1.50 m. | material |  | 700 |
| Stormwater Utilities - PVC Pipes - 400 mm Diameter Depth: 1.51m - 2.50m | material |  | 700 |
| Stormwater Utilities - PVC Pipes - 400 mm Diameter Depth exceeds 2.50m | material |  | 1000 |
| Stormwater Utilities - PVC Pipes - 500 mm Depth: 1.51m - 2.50m | material |  | 720 |
| Stormwater Utilities - PVC Pipes - 500 mm Depth exceeds 2.50m | material |  | 1200 |
| Stormwater Utilities - GRP Pipes - 400 mm Diameter Depth: 0.00 m - 1.50 m. | material |  | 580 |
| Stormwater Utilities - GRP Pipes - 400 mm Depth: 1.51m - 2.50m | material |  | 600 |
| Stormwater Utilities - GRP Pipes - 400 mm Depth exceeds 2.50m | material |  | 900 |
| Stormwater Utilities - GRP Pipes - 500 mm Depth: 0.00 m - 1.50 m. | material |  | 600 |
| Stormwater Utilities - GRP Pipes - 500 mm Depth: 1.51m - 2.50m | material |  | 650 |
| Stormwater Utilities - GRP Pipes - 500 mm Depth: 2.51m - 3.50m | material |  | 800 |
| Stormwater Utilities - GRP Pipes - 500 mm Depth: 3.51m - 4.50m | material |  | 1100 |
| Stormwater Utilities - GRP Pipes - 500 mm Depth exceeds 4.50m | material |  | 1500 |
| Stormwater Utilities - GRP Pipes - 600 mm Depth: 1.51m - 2.50m | material |  | 750 |
| Stormwater Utilities - GRP Pipes - 600 mm Depth: 2.51m - 3.50m | material |  | 850 |
| Stormwater Utilities - GRP Pipes - 600 mm Depth: 3.51m - 4.50m | material |  | 1200 |
| Stormwater Utilities - GRP Pipes - 600 mm Depth exceeds 4.50m | material |  | 1800 |
| Stormwater Utilities - GRP Pipes - 700 mm Depth: 1.51m - 2.50m | material |  | 1100 |
| Stormwater Utilities - GRP Pipes - 700 mm Depth: 2.51m - 3.50m | material |  | 1200 |
| Stormwater Utilities - GRP Pipes - 700 mm Depth exceeds 3.50m | material |  | 1500 |
| Stormwater Utilities - GRP Pipes - 800 mm Depth: 1.51m - 2.50m | material |  | 1250 |
| Stormwater Utilities - GRP Pipes - 800 mm Depth: 2.51m - 3.50m | material |  | 1500 |
| Stormwater Utilities - GRP Pipes - 800 mm Depth exceeds 3.50m | material |  | 2000 |
| Stormwater Utilities - (ring 1200 mm internal dia.) MH depth 1.51 - 2.50m | material |  | 16500 |
| Stormwater Utilities - (ring 1200 mm internal dia.) MH depth 2.51 - 3.50m | material |  | 17500 |
| Stormwater Utilities - (ring 1200 mm internal dia.) MH depth 3.51 - 4.50m | material |  | 25000 |
| Stormwater Utilities - (ring 1200 mm internal dia.) MH depth exceeds 4.50m | material |  | 50000 |
| Stormwater Utilities - (ring 1500 mm internal dia.) MH depth exceeds 3.50m | material |  | 30000 |
| Stormwater Utilities - (ring 1500 mm internal dia.) MH depth 1.51 - 2.50m | material |  | 20000 |
| Stormwater Utilities - (ring 1500 mm internal dia.) MH depth 2.51 - 3.50m | material |  | 25000 |
| Single Catch basin as per drawings | material |  | 6000 |
| Double Catch basin as per drawings | material |  | 12000 |
| Curb inlet catch basin | material |  | 14000 |
| Outfall structure as per drawings | material |  | 45000 |
| Excavation for Roadway, fences and bridge, cuttings including dump locations (all types of soil) | material |  | 2 |
| Parcrels Excavation for cuttings (all types of soil) | material |  | 2 |
| Embankments to the roads , fences and bridge. | material |  | 30 |
| Embankments to the parcels | material |  | 30 |
| Subgrade | material |  | 32 |
| Bituminous concrete wearing course, (Grading I - Class A), including tack coat (RC2) according to drawings. | material |  | 600 |
| Normally Open Point (R M U) 13.8 kv for Outdoor type according to the Saudi Electric Company specifications and requirements. | material |  | 60000 |
| Ring Main Unit RMU, 13.8KV, According to the specifications and standards of SEC | material |  | 75000 |
| Piping TSE Network - 3-outlet fire hydrant (2 x 2.5 inch and 1 x 4.5 inch) in the form of a separate dry vacuum cylinder | material |  | 9000 |
| 6-ways ducts, 50mm diameter, (HDPE TYPE) . | material |  | 140 |
| 2 x 32 mm HDPE sub-ducts | material |  | 100 |
| 4 x 32 mm HDPE sub-ducts | material |  | 200 |
| 6 x 32 mm HDPE sub-ducts | material |  | 400 |
| 6-ways ducts, 50mm diameter, (HDPE TYPE) + 2 x 32 mm HDPE sub-ducts | material |  | 170 |
| 6-ways ducts, 50mm diameter, (HDPE TYPE) + 4 x 32 mm HDPE sub-ducts | material |  | 175 |
| 6-ways ducts, 50mm diameter, (HDPE TYPE) + 6 x 32 mm HDPE sub-ducts | material |  | 200 |
| Reinforced concrete manhole Type 1- 1200x1500x1200mm | material |  | 17000 |
| Reinforced concrete manhole Type 2- 1200x1500x1200mm | material |  | 17000 |
| 6-ways ducts, 50mm diameter, (HDPE TYPE) . | material |  | 200 |
| 6-ways ducts, 50mm diameter, (HDPE TYPE) + 2 x 32 mm HDPE sub-ducts | material |  | 450 |
| "METAL FENCE | material |  | 1300 |
| Gate, to fit 15000mm opening x 2500mm high | material |  | 40000 |
| Gate, to fit 3600 mm opening x 2500mm high | material |  | 12000 |
| "Reinforced precast prestressed concrete | material |  | 2000 |
| "PRESTRESSING STRANDS | material |  | 14000 |
| "New Jersey | material |  | 500 |
| "BRIDGE BEARINGS | material |  | 5000 |
| "EXPANSION JOINTS | material |  | 5500 |
| "GUARD RAIL | material |  | 1800 |
| "GRP PANEL | material |  | 1600 |
| "LOGO MODON | material |  | 80000 |
| "Bridge Gully (Scupper) drainage | material |  | 8000 |
| Stranded Copper wire, , 3xC,2 mm² XLPE/PVC | material |  | 50 |
| Fiber Optic Patch Panel 12 port | material |  | 10000 |
| Modular Industrial Switches for main pole | material |  | 15000 |
| 8POE ports Industrial Switches for remote poles | material |  | 10000 |
| CORE SWITCH | material |  | 30000 |
| Access Switch 48 port | material |  | 15000 |
| SERVER | material |  | 65000 |
| Stand rack 42U- 19" completed with ,ventilation fans, earthling connections, labeling and should be equipped with an extra capacity of 20% for future increase. | material |  | 15000 |
| IP Outdoor CCTV POE Camera,5 MP, Metal Housing | material |  | 5000 |
| "Outdoor PTZ with IR, HDTV 1080 and 31x optical, 12x digital, total 372x zoom, H264/265 with Motion JPEG. | material |  | 35000 |
| Security workstation with 1 x 19" LED screen including graphic video cards, software, license and interfaces required for the system | material |  | 25000 |
| LED Screen 43" (24/7 operation) with Ethernet decoders | material |  | 15000 |
| Network Video Recorder 4k 64 Channel, Up to 12 MP high-definition live view, storage and playback, 2 HDMI (different source) and 2 VGA (different source) interfaces (Min). | material |  | 50000 |
| Keypad | material |  | 100000 |
| Horizontal Power Distribution Unit (min 8 outlets) | material |  | 10000 |
| "35 Meters mono pole with Double Platform for Access Points including : | material |  | 160000 |
| "25 Meters pole for CCTV Cameras including : | material |  | 130000 |
| Short Range wireless point to point wireless bridge | material |  | 13000 |
| Stranded armored Cables, Copper, 4C,35mm² XLPE/SWA /PVC | material |  | 110 |
| Stranded armored Cables, Copper, 4xC16mm² XLPE /SWA/PVC | material |  | 60 |
| Single Core Cable, Copper 1C,16mm² CU/PVC For Earth | material |  | 40 |
| Single Core Cable, Copper 1C,10mm² CU/PVC For Earth | material |  | 15 |
| Duct bank for (1) cables | material |  | 240 |
| "PAINT ON CEMENT PLASTER | material |  | 60 |
| Ref. SH-01, Golden daisy bush euryops pectinatus | material |  | 110 |
| Planting curb edge, size 500 x 250 x 100 mm. | material |  | 120 |
| Pipe line O.D 50 mm PN 10, in depth 0 to 1.5 m | material |  | 200 |
| Pipe line O.D 32 mm PN 10, in depth 0 to 1.5 m | material |  | 180 |
| Pipe line O.D 25 mm PN 10, in depth 0 to 1.5 m | material |  | 80 |
| Supply and installation of Electrical Solenoid Valve ( 1") inside PVC box with all accessories( pressure regulator module, manual bleeding, expedient for TSE water, in line filter, manual valve, valve box with cover, and all other accessories necessary to | material |  | 6500 |
| Supply and installation of Electrical Solenoid Valve ( 1.5") inside PVC box with all accessories( pressure regulator module, manual bleeding, expedient for TSE water, in line filter, manual valve, valve box with cover, and all other accessories necessary | material |  | 7500 |
| Supply and installation of 1" quick coupler valve inside PVC box | material |  | 4500 |
| "Supply and installation of a flush valve at the end of ½-inch drip irrigation lines, including all necessary accessories such as protective box and fittings, to complete the work as required and in accordance with the supervising engineer’s instructions. | material |  | 2000 |
| Supply and installation of 16 mm dia (O.D.) linear low density polyethylene tubing including in line P.C. emitters, accessories, stakes, takeoff /risers connections from laterals, and all requirements needed to finish work as per drawings (In line dripper | material |  | 40 |
| Supply and installation of Advanced Irrigation controller subject to client approval, can connect with Centarl Control system and cabable to integrate with Smart City systems,BMS or Scada system ,Can record the real flow rate per stations, | material |  | 350000 |
| Supply and install single station decoder for valve connection to field controller including waterproof connectors and all other accessories necessary to complete the works in accordance with specifications and drawings (Decoder Single station ). | material |  | 5000 |
| Handicap ramp | material |  | 1500 |
| Loader | equipment |  |  |
| Bulldozer | equipment |  |  |
| Water Tanker | equipment |  |  |
| Grader | equipment |  |  |
| Road Roller | equipment |  |  |
| Steel Fixer | labor |  |  |
| Compactor | equipment |  |  |
| Asphalt Paver | equipment |  |  |
| Electrician | labor |  |  |
| Crane | equipment |  |  |
| Plumber | labor |  |  |

## Schedule

| ID | WBS | Activity | Type | Duration | Start | Finish | Predecessors | Complete | Planned start | Planned finish | Total float | Free float | USERTEXT | Weight 1 | Total Weight % | Mapping Sheet Activity ID | % A | JEDDAH 1 - Area Name | Milestone Date |
| --- | --- | --- | --- | --- | --- | --- | --- | --- | --- | --- | --- | --- | --- | --- | --- | --- | --- | --- | --- |
|  | 5 | **Milestones** |  |  | 2025-11-19 | 2028-06-03 |  |  |  |  |  |  |  |  |  |  |  |  |  |
|  | 1 | **Key Milestones** |  |  | 2025-11-19 | 2028-06-03 |  |  |  |  |  |  |  |  |  |  |  |  |  |
| CON-LEG101-MS-1090 |  | Project Commencement Date | milestone | 0d | 2025-11-19 A | 2025-11-19 A |  | 100% |  |  |  |  | MKH2-02-002-MS-1000 | 0 | 0 | B1000 | 1 | MIle |  |
| CON-LEG101-MS-1000 |  | Project Completion Date | milestone | 0d | 2028-06-03 | 2028-06-03 | CON-LEG101-MS-1080, CON-LEG101-MS-1060, CON-LEG101-MS-1120, CON-LEG101-MS-1130, CON-LEG101-MS-1140, CON-LEG101-MS-1150, CON-LEG101-MS-1100, CON-LEG101-MS-1010, CON-LEG101-MS-1040, CON-LEG101-MS-1030, CON-LEG101-MS-1020, CON-LEG101-MS-1050, CON-LEG101-DM-1000, CON-LEG101-DM-1010, CON-LEG101-DM-1020, CON-LEG101-DM-1030, CON-LEG101-DM-1040 |  |  |  | -169d | 0d | MKH2-02-002-MS-1010 | 0 | 0 | B1010 |  | MIle | 540 Days After Contract Signing |
|  | 2 | **Contractual Milestone** |  |  | 2025-12-18 | 2028-06-03 |  |  |  |  |  |  |  |  |  |  |  |  |  |
|  | 2 | **Mobilization** |  |  | 2026-03-04 | 2026-03-04 |  |  |  |  |  |  |  |  |  |  |  |  |  |
| CON-LEG101-MS-1070 |  | Finish Mobilization | milestone | 0d | 2026-03-04 A | 2026-03-04 A | CON-LEG101-MB-1020, CON-LEG101-PS-1100, CON-LEG101-PS-1110, CON-LEG101-PS-1120, CON-LEG101-PS-1130, CON-LEG101-PS-1140, CON-LEG101-PS-1150, CON-LEG101-PS-1160, CON-LEG101-PS-1170, CON-LEG101-MB-1160, CON-LEG101-MB-1110, CON-LEG101-MB-1120, CON-LEG101-MB-1000, CON-LEG101-MB-1340, CON-LEG101-MB-1270, CON-LEG101-MB-1260, CON-LEG101-MB-1250, CON-LEG101-MB-1130, CON-LEG101-MB-1150, CON-LEG101-TP-1330, CON-LEG101-PA-1000, CON-LEG101-PA-1010, CON-LEG101-PA-1020, CON-LEG101-PA-1030, CON-LEG101-PA-1040 | 100% | 2026-04-04 | 2026-04-04 |  |  | MKH2-02-002-MS-1050 | 0 | 0 | B1060 | 1 | MIle | Within 30 Days After Contract Signing |
|  | 3 | **Time Schedule** |  |  | 2025-12-18 | 2025-12-18 |  |  |  |  |  |  |  |  |  |  |  |  |  |
| CON-LEG101-MS-1080 |  | Finish Baseline Time Schedule | milestone | 0d | 2025-12-18 A | 2025-12-18 A | CON-LEG101-PS-1000, CON-LEG101-PS-1090 | 100% | 2025-12-23 | 2025-12-23 |  |  | MKH2-02-002-MS-1020 | 0 | 0 | B1020 | 1 | MIle | Within 30 Days After Contract Signing |
|  | 4 | **Engineering** |  |  | 2026-11-21 | 2026-11-21 |  |  |  |  |  |  |  |  |  |  |  |  |  |
| CON-LEG101-MS-1060 |  | Finish Submission and Approval for Shop Drawings, Method of Statement, Prequalification and Materials | milestone | 0d | 2026-11-21 | 2026-11-21 | CON-LEG101-EN-1780, CON-LEG101-EN-1790, CON-LEG101-EN-1800, CON-LEG101-EN-1750, CON-LEG101-EN-1760, CON-LEG101-EN-1770, CON-LEG101-EN-1720, CON-LEG101-EN-1730, CON-LEG101-EN-1740, CON-LEG101-EN-1690, CON-LEG101-EN-1700, CON-LEG101-EN-1710, CON-LEG101-EN-1660, CON-LEG101-EN-1670, CON-LEG101-EN-1680, CON-LEG101-EN-3280, CON-LEG101-EN-3290, CON-LEG101-EN-3300, CON-LEG101-EN-3310, CON-LEG101-EN-3320, CON-LEG101-EN-3330, CON-LEG101-EN-3360, CON-LEG101-EN-1570, CON-LEG101-EN-1580, CON-LEG101-EN-1590, CON-LEG101-EN-1600, CON-LEG101-EN-1610, CON-LEG101-EN-1150, CON-LEG101-EN-1160, CON-LEG101-EN-1170, CON-LEG101-EN-1190, CON-LEG101-EN-1200, CON-LEG101-EN-1210, CON-LEG101-EN-1230, CON-LEG101-EN-1220, CON-LEG101-EN-3340, CON-LEG101-EN-3350, CON-LEG101-EN-3370, CON-LEG101-EN-3380, CON-LEG101-EN-3390, CON-LEG101-EN-3400, CON-LEG101-EN-3410, CON-LEG101-EN-3420, CON-LEG101-EN-3430, CON-LEG101-EN-3440, CON-LEG101-EN-3450, CON-LEG101-EN-3460, CON-LEG101-EN-3490, CON-LEG101-EN-3500, CON-LEG101-EN-3510, CON-LEG101-EN-3520, CON-LEG101-EN-3530, CON-LEG101-EN-3560, CON-LEG101-EN-3590, CON-LEG101-EN-3540, CON-LEG101-EN-3550, CON-LEG101-EN-3470, CON-LEG101-EN-3570, CON-LEG101-EN-3580, CON-LEG101-EN-3480, CON-LEG101-SB-4270, CON-LEG101-SB-4290, CON-LEG101-SB-4310, CON-LEG101-SB-1030, CON-LEG101-SB-1070, CON-LEG101-SB-1110, CON-LEG101-SB-1150, CON-LEG101-SB-1190, CON-LEG101-SB-2370, CON-LEG101-SB-1230, CON-LEG101-SB-1590, CON-LEG101-SB-3330, CON-LEG101-SB-1550, CON-LEG101-SB-1630, CON-LEG101-SB-1470, CON-LEG101-SB-1510, CON-LEG101-SB-1430, CON-LEG101-SB-2110, CON-LEG101-SB-2070, CON-LEG101-SB-1390, CON-LEG101-SB-2030, CON-LEG101-SB-3750, CON-LEG101-SB-3790, CON-LEG101-SB-3810, CON-LEG101-SB-3770, CON-LEG101-SB-3830, CON-LEG101-SB-3850, CON-LEG101-SB-3870, CON-LEG101-SB-3890, CON-LEG101-SB-2310, CON-LEG101-SB-2330, CON-LEG101-SB-3910, CON-LEG101-SB-3350, CON-LEG101-SB-3390, CON-LEG101-SB-3370, CON-LEG101-SB-1270, CON-LEG101-SB-1790, CON-LEG101-SB-1830, CON-LEG101-SB-1870, CON-LEG101-SB-1670, CON-LEG101-SB-1310, CON-LEG101-SB-1710, CON-LEG101-SB-1750, CON-LEG101-SB-1350, CON-LEG101-SB-2430, CON-LEG101-SB-1910, CON-LEG101-SB-1950, CON-LEG101-SB-1990, CON-LEG101-SB-3410, CON-LEG101-SB-3510, CON-LEG101-SB-3450, CON-LEG101-SB-3430, CON-LEG101-SB-3470, CON-LEG101-SB-3490, CON-LEG101-SB-3530, CON-LEG101-SB-3630, CON-LEG101-SB-3550, CON-LEG101-SB-3570, CON-LEG101-SB-3590, CON-LEG101-SB-3610, CON-LEG101-SB-3650, CON-LEG101-SB-3670, CON-LEG101-SB-3690, CON-LEG101-SB-3710, CON-LEG101-SB-3730, CON-LEG101-SB-3950, CON-LEG101-SB-3970, CON-LEG101-SB-3990, CON-LEG101-SB-4010, CON-LEG101-SB-3940, CON-LEG101-SB-4040, CON-LEG101-SB-4150, CON-LEG101-SB-4190, CON-LEG101-SB-4050, CON-LEG101-SB-4070, CON-LEG101-SB-4090, CON-LEG101-SB-4110, CON-LEG101-SB-4130, CON-LEG101-SB-4170 |  |  |  | -67d | 0d | MKH2-02-002-MS-1030 | 0 | 0 | B1030 |  | MIle | Within 30 Days After Contract Signing |
|  | 1 | **Procurement** |  |  | 2026-11-15 | 2026-11-15 |  |  |  |  |  |  |  |  |  |  |  |  |  |
| CON-LEG101-MS-1100 |  | Finish PO for Short Lead Item & Long Lead Item | milestone | 0d | 2026-11-15 | 2026-11-15 | CON-LEG101-PR-3990, CON-LEG101-PR-1550, CON-LEG101-PR-1580, CON-LEG101-PR-1610, CON-LEG101-PR-1640, CON-LEG101-PR-1670, CON-LEG101-PR-1700, CON-LEG101-PR-1730, CON-LEG101-PR-1760, CON-LEG101-PR-1790, CON-LEG101-PR-1820, CON-LEG101-PR-1850, CON-LEG101-PR-2000, CON-LEG101-PR-2030, CON-LEG101-PR-2120, CON-LEG101-PR-2150, CON-LEG101-PR-2180, CON-LEG101-PR-2210, CON-LEG101-PR-2260, CON-LEG101-PR-2300, CON-LEG101-PR-2340, CON-LEG101-PR-2370, CON-LEG101-PR-2440, CON-LEG101-PR-2480, CON-LEG101-PR-2520, CON-LEG101-PR-2580, CON-LEG101-PR-2610, CON-LEG101-PR-2640, CON-LEG101-PR-2650, CON-LEG101-PR-2660, CON-LEG101-PR-2670, CON-LEG101-PR-2800, CON-LEG101-PR-2840, CON-LEG101-PR-2850, CON-LEG101-PR-2860, CON-LEG101-PR-2870, CON-LEG101-PR-2880, CON-LEG101-PR-2890, CON-LEG101-PR-3080, CON-LEG101-PR-3120, CON-LEG101-PR-3160, CON-LEG101-PR-3190, CON-LEG101-PR-3200, CON-LEG101-PR-3270, CON-LEG101-PR-3300, CON-LEG101-PR-3310, CON-LEG101-PR-3380, CON-LEG101-PR-3420, CON-LEG101-PR-3460, CON-LEG101-PR-3500, CON-LEG101-PR-3540, CON-LEG101-PR-3580, CON-LEG101-PR-3620, CON-LEG101-PR-3660, CON-LEG101-PR-3700, CON-LEG101-PR-3740, CON-LEG101-PR-3770, CON-LEG101-PR-3800, CON-LEG101-PR-3840, CON-LEG101-PR-3880, CON-LEG101-PR-3920, CON-LEG101-PR-1000, CON-LEG101-PR-1010, CON-LEG101-PR-1020, CON-LEG101-PR-1030, CON-LEG101-PR-1040, CON-LEG101-PR-1050, CON-LEG101-PR-1060, CON-LEG101-PR-1070, CON-LEG101-PR-1240, CON-LEG101-PR-1250, CON-LEG101-PR-1260, CON-LEG101-PR-1330, CON-LEG101-PR-1360, CON-LEG101-PR-1390, CON-LEG101-PR-1420, CON-LEG101-PR-1440, CON-LEG101-PR-1470, CON-LEG101-PR-1500, CON-LEG101-PR-1520 |  |  |  | -61.2d | 0d |  |  |  |  |  | MIle |  |
|  | 5 | **Construction** |  |  | 2027-02-01 | 2028-06-03 |  |  |  |  |  |  |  |  |  |  |  |  |  |
| CON-LEG101-MS-1130 |  | Completion of Deep infrastructure network | milestone | 0d | 2027-02-01 | 2027-02-01 | CON-LEG101-LR-4320, CON-LEG101-LR-3500, CON-LEG101-LR-4430, CON-LEG101-LR-3410, CON-LEG101-LR-4210, CON-LEG101-LR-4330, CON-LEG101-LR-11800, CON-LEG101-LR-11750, CON-LEG101-LR-4300, CON-LEG101-LR-3570, CON-LEG101-LR-3490, CON-LEG101-LR-11710, CON-LEG101-LR-11660, CON-LEG101-LR-4290, CON-LEG101-LR-3560, CON-LEG101-LR-3480, CON-LEG101-LR-11620, CON-LEG101-LR-11570, CON-LEG101-LR-4280, CON-LEG101-LR-3550, CON-LEG101-LR-3460, CON-LEG101-LR-11530, CON-LEG101-LR-11480, CON-LEG101-LR-4260, CON-LEG101-LR-3540, CON-LEG101-LR-3450, CON-LEG101-LR-11440, CON-LEG101-LR-11390, CON-LEG101-LR-4250, CON-LEG101-LR-11340, CON-LEG101-LR-11280, CON-LEG101-LR-4240, CON-LEG101-LR-3530, CON-LEG101-LR-3440, CON-LEG101-LR-11230, CON-LEG101-LR-11180, CON-LEG101-LR-4230, CON-LEG101-LR-3520, CON-LEG101-LR-3430, CON-LEG101-LR-11130, CON-LEG101-LR-11070, CON-LEG101-LR-4220, CON-LEG101-LR-3510, CON-LEG101-LR-3420, CON-LEG101-LR-11030, CON-LEG101-LR-10970, CON-LEG101-LR-10880, CON-LEG101-LR-10920, CON-LEG101-LR-4200 |  |  |  | 41.65d | 90.45d |  |  |  |  |  | MIle |  |
| CON-LEG101-MS-1120 |  | Completion of Roads & Meduim Voltage | milestone | 0d | 2027-07-03 | 2027-07-03 | CON-LEG101-LR-5880, CON-LEG101-LR-7680, CON-LEG101-LR-5890, CON-LEG101-LR-7690, CON-LEG101-LR-5900, CON-LEG101-LR-7700, CON-LEG101-LR-5910, CON-LEG101-LR-7710, CON-LEG101-LR-5920, CON-LEG101-LR-7720, CON-LEG101-LR-5930, CON-LEG101-LR-7730, CON-LEG101-LR-5940, CON-LEG101-LR-7740, CON-LEG101-LR-5950, CON-LEG101-LR-7750, CON-LEG101-LR-5960, CON-LEG101-LR-7760, CON-LEG101-LR-5970 |  |  |  | -104d | 0d |  |  |  |  |  | MIle |  |
| CON-LEG101-MS-1140 |  | Completion of Shallow infrastructure network | milestone | 0d | 2027-10-17 | 2027-10-17 | CON-LEG101-LR-2070, CON-LEG101-LR-2460, CON-LEG101-LR-2610, CON-LEG101-LR-2680, CON-LEG101-LR-10740, CON-LEG101-LR-1000, CON-LEG101-LR-1110, CON-LEG101-LR-1150, CON-LEG101-LR-8760, CON-LEG101-LR-9330, CON-LEG101-LR-9940, CON-LEG101-LR-8330, CON-LEG101-LR-2320, CON-LEG101-LR-2390, CON-LEG101-LR-2470, CON-LEG101-LR-10750, CON-LEG101-LR-1260, CON-LEG101-LR-1010, CON-LEG101-LR-1120, CON-LEG101-LR-1160, CON-LEG101-LR-8770, CON-LEG101-LR-9340, CON-LEG101-LR-9950, CON-LEG101-LR-8290, CON-LEG101-LR-8340, CON-LEG101-LR-8440, CON-LEG101-LR-2100, CON-LEG101-LR-2210, CON-LEG101-LR-2330, CON-LEG101-LR-2480, CON-LEG101-LR-10760, CON-LEG101-LR-1020, CON-LEG101-LR-1130, CON-LEG101-LR-1170, CON-LEG101-LR-1230, CON-LEG101-LR-1270, CON-LEG101-LR-8780, CON-LEG101-LR-9350, CON-LEG101-LR-9960, CON-LEG101-LR-8300, CON-LEG101-LR-8350, CON-LEG101-LR-8450, CON-LEG101-LR-2110, CON-LEG101-LR-2220, CON-LEG101-LR-2410, CON-LEG101-LR-2490, CON-LEG101-LR-2710, CON-LEG101-LR-10770, CON-LEG101-LR-1030, CON-LEG101-LR-8790, CON-LEG101-LR-9360, CON-LEG101-LR-9970, CON-LEG101-LR-8310, CON-LEG101-LR-8360, CON-LEG101-LR-8460, CON-LEG101-LR-2120, CON-LEG101-LR-2230, CON-LEG101-LR-2340, CON-LEG101-LR-2420, CON-LEG101-LR-2500, CON-LEG101-LR-2640, CON-LEG101-LR-2720, CON-LEG101-LR-10780, CON-LEG101-LR-1040, CON-LEG101-LR-8800, CON-LEG101-LR-9370, CON-LEG101-LR-9900, CON-LEG101-LR-9980, CON-LEG101-LR-8370, CON-LEG101-LR-2130, CON-LEG101-LR-2240, CON-LEG101-LR-2350, CON-LEG101-LR-2430, CON-LEG101-LR-2510, CON-LEG101-LR-2730, CON-LEG101-LR-10790, CON-LEG101-LR-1050, CON-LEG101-LR-1180, CON-LEG101-LR-1280, CON-LEG101-LR-8810, CON-LEG101-LR-9380, CON-LEG101-LR-9990, CON-LEG101-LR-8380, CON-LEG101-LR-2140, CON-LEG101-LR-2740, CON-LEG101-LR-2250, CON-LEG101-LR-2360, CON-LEG101-LR-2440, CON-LEG101-LR-2520, CON-LEG101-LR-2660, CON-LEG101-LR-10800, CON-LEG101-LR-1060, CON-LEG101-LR-1140, CON-LEG101-LR-1240, CON-LEG101-LR-8820, CON-LEG101-LR-9390, CON-LEG101-LR-10000, CON-LEG101-LR-7460, CON-LEG101-LR-8390, CON-LEG101-LR-2150, CON-LEG101-LR-2260, CON-LEG101-LR-2530, CON-LEG101-LR-10810, CON-LEG101-LR-1070, CON-LEG101-LR-8050, CON-LEG101-LR-7950, CON-LEG101-LR-7850, CON-LEG101-LR-9400, CON-LEG101-LR-10010, CON-LEG101-LR-8400, CON-LEG101-LR-2160, CON-LEG101-LR-2270, CON-LEG101-LR-2540, CON-LEG101-LR-10820, CON-LEG101-LR-1080, CON-LEG101-LR-7960, CON-LEG101-LR-8060, CON-LEG101-LR-9410, CON-LEG101-LR-10020, CON-LEG101-LR-8410, CON-LEG101-LR-2170, CON-LEG101-LR-2280, CON-LEG101-LR-2370, CON-LEG101-LR-2450, CON-LEG101-LR-2550, CON-LEG101-LR-2670, CON-LEG101-LR-2750, CON-LEG101-LR-10830, CON-LEG101-LR-1090, CON-LEG101-LR-7970, CON-LEG101-LR-8070, CON-LEG101-LR-8500, CON-LEG101-LR-9420, CON-LEG101-LR-10030, CON-LEG101-LR-8320, CON-LEG101-LR-8420, CON-LEG101-LR-8470, CON-LEG101-LR-8280, CON-LEG101-PR-1970, CON-LEG101-LR-1520, CON-LEG101-LR-2630, CON-LEG101-LR-1570, CON-LEG101-LR-1580, CON-LEG101-LR-1590, CON-LEG101-LR-1620, CON-LEG101-PR-1960, CON-LEG101-LR-15130, CON-LEG101-LR-15140, CON-LEG101-LR-15150, CON-LEG101-LR-15160, CON-LEG101-LR-15170 |  |  |  | -46.4d | 0d |  |  |  |  |  | MIle |  |
| CON-LEG101-MS-1150 |  | Completion all Works | milestone | 0d | 2028-06-03 | 2028-06-03 | CON-LEG101-MS-1120, CON-LEG101-MS-1130, CON-LEG101-MS-1140, CON-LEG101-MS-1020, CON-LEG101-MS-1050, CON-LEG101-MS-1010, CON-LEG101-MS-1040, CON-LEG101-MS-1030, CON-LEG101-DM-1040, CON-LEG101-DM-1030, CON-LEG101-DM-1020, CON-LEG101-DM-1010, CON-LEG101-DM-1000 |  |  |  | -169d | 0d |  |  |  |  |  | MIle |  |
|  | 6 | **Monitoring and Control Milestone** |  |  | 2027-07-04 | 2028-05-02 |  |  |  |  |  |  |  |  |  |  |  |  |  |
| CON-LEG101-MS-1050 |  | Completion of Outside Boundary Area's Scope (Tie-in Lines) | milestone | 0d | 2027-07-04 | 2027-07-04 | CON-LEG101-OBA-1140, CON-LEG101-OBA-1150, CON-LEG101-OBA-1060, CON-LEG101-OBA-1070, CON-LEG101-OBA-1220, CON-LEG101-OBA-1420, CON-LEG101-OBA-1430, CON-LEG101-OBA-1340, CON-LEG101-OBA-1440, CON-LEG101-OBA-1450, CON-LEG101-OBA-1410, CON-LEG101-OBA-1510 FF |  |  |  | 11.18d | 0d |  | 0 | 0 | B1090 |  | MIle | Within 540 Days After Contract Signing |
| CON-LEG101-MS-1020 |  | Completion of Bridge | milestone | 0d | 2027-09-04 | 2027-09-04 | CON-LEG101-BR-1250, CON-LEG101-BR-1020, CON-LEG101-BR-1030, CON-LEG101-BR-1130, CON-LEG101-BR-1060, CON-LEG101-BR-1090, CON-LEG101-BR-1220, CON-LEG101-BR-1230 |  |  |  | -43d | 0d | MKH2-02-002-MS-1080 | 0 | 0 | B1080 |  | MIle | Within 360 Days After Contract Signing |
| CON-LEG101-MS-1040 |  | Completion of Fence and Gate | milestone | 0d | 2027-12-11 | 2027-12-11 | CON-LEG101-FG-1340, CON-LEG101-FG-1350, CON-LEG101-FG-1360, CON-LEG101-FG-1270, CON-LEG101-FG-1370, CON-LEG101-FG-1380 |  |  |  | -41.5d | 0d | MKH2-02-002-MS-1060 | 0 | 0 | B1070 |  | MIle | Within 360 Days After Contract Signing |
| CON-LEG101-MS-1010 |  | Completion of Roads Finishing | milestone | 0d | 2027-12-22 | 2027-12-22 | CON-LEG101-LR-6080, CON-LEG101-LR-6090, CON-LEG101-LR-6100, CON-LEG101-LR-6110, CON-LEG101-LR-6120, CON-LEG101-LR-6180, CON-LEG101-LR-6380, CON-LEG101-LR-6280, CON-LEG101-LR-6680, CON-LEG101-LR-6780, CON-LEG101-LR-6190, CON-LEG101-LR-6390, CON-LEG101-LR-6290, CON-LEG101-LR-6690, CON-LEG101-LR-6790, CON-LEG101-LR-6200, CON-LEG101-LR-6400, CON-LEG101-LR-6300, CON-LEG101-LR-6700, CON-LEG101-LR-6800, CON-LEG101-LR-6210, CON-LEG101-LR-6410, CON-LEG101-LR-6310, CON-LEG101-LR-6710, CON-LEG101-LR-6810, CON-LEG101-LR-6220, CON-LEG101-LR-6420, CON-LEG101-LR-6320, CON-LEG101-LR-6720, CON-LEG101-LR-6820, CON-LEG101-LR-6230, CON-LEG101-LR-6130, CON-LEG101-LR-6430, CON-LEG101-LR-6330, CON-LEG101-LR-6730, CON-LEG101-LR-6830, CON-LEG101-LR-6240, CON-LEG101-LR-6140, CON-LEG101-LR-6440, CON-LEG101-LR-6340, CON-LEG101-LR-6740, CON-LEG101-LR-6840, CON-LEG101-LR-6250, CON-LEG101-LR-6150, CON-LEG101-LR-6450, CON-LEG101-LR-6350, CON-LEG101-LR-6750, CON-LEG101-LR-6850, CON-LEG101-LR-6260, CON-LEG101-LR-6160, CON-LEG101-LR-6460, CON-LEG101-LR-6360, CON-LEG101-LR-6760, CON-LEG101-LR-6860, CON-LEG101-LR-6270, CON-LEG101-LR-6170, CON-LEG101-LR-6470, CON-LEG101-LR-6370, CON-LEG101-LR-6770, CON-LEG101-LR-6870 |  |  |  | -103.4d | 0d | MKH2-02-002-MS-1040 | 0 | 0 | B1040 |  | MIle | Within 300 Days After Contract Signing |
| CON-LEG101-MS-1030 |  | Completion of Roundabout & Landscape works | milestone | 0d | 2028-05-02 | 2028-05-02 | CON-LEG101-RA-1390, A, CON-LEG101-RA-1090, CON-LEG101-RA-1060, CON-LEG101-RA-1400, CON-LEG101-RA-1460, CON-LEG101-RA-1100, CON-LEG101-RA-1070, CON-LEG101-RA-1410, CON-LEG101-RA-1470, CON-LEG101-RA-1110, CON-LEG101-RA-1080 |  |  |  | -169d | 0d | MKH2-02-002-MS-1070 | 0 | 0 | B1050 |  | MIle | Within 300 Days After Contract Signing |

| ID | WBS | Activity | Duration | Start | Finish | Predecessors | Complete | Planned start | Planned finish | Resources | USERTEXT | Weight 1 | Total Weight % | Mapping Sheet Activity ID | % A | JEDDAH 1 - Area Name |
| --- | --- | --- | --- | --- | --- | --- | --- | --- | --- | --- | --- | --- | --- | --- | --- | --- |
|  | 2 | **Mobilization** |  | 2025-11-19 | 2026-03-04 |  |  |  |  |  |  |  |  |  |  |  |
|  | 4 | **Topographic Survey** |  | 2025-11-19 | 2025-11-27 |  |  |  |  |  |  |  |  |  |  |  |
| CON-LEG101-TP-1330 |  | Site Survey Works | 8d | 2025-11-19 A | 2025-11-27 A | CON-LEG101-MS-1090 SS | 100% |  |  | Engineer & Technician [530 h] | MKH2-02-002-TP-1100 | 0 | 0 | C1520 | 1 | Mobliza |
|  | 2 | **Site Facilities & Offices** |  | 2025-11-19 | 2026-01-12 |  |  |  |  |  |  |  |  |  |  |  |
| CON-LEG101-MB-1000 |  | Mobilization of Manpower | 4d | 2025-11-19 A | 2025-11-29 A | CON-LEG101-MB-1130 | 100% | 2025-12-15 | 2025-12-18 | Labor [745 h] | MKH2-02-002-MB-1090 | 0 | 0 | C1090 | 1 | Mobliza |
| CON-LEG101-MB-1020 |  | Mobilization of Equipment | 6d | 2025-11-19 A | 2025-11-29 A | CON-LEG101-MB-1150 | 100% | 2025-12-13 | 2025-12-18 | Labor [745 h] | MKH2-02-002-MB-1100 | 0 | 0 | C1100 | 1 | Mobliza |
| CON-LEG101-MB-1160 |  | Construct Site Offices & Storage | 17d | 2025-11-19 A | 2026-01-12 A | CON-LEG101-MB-1260 | 100% | 2025-11-30 | 2025-12-18 | Labor [745 h] | MKH2-02-002-MB-1040 | 0 | 0 | C1040 | 1 | Mobliza |
| CON-LEG101-MB-1340 |  | Site Layout Plan | 6d | 2025-11-19 A | 2025-11-25 A | CON-LEG101-MS-1090 SS | 100% |  |  | Labor [745 h] | MKH2-02-002-MB-1000 | 0 | 0 | C1000 | 1 | Mobliza |
| CON-LEG101-MB-1120 |  | Electrical Works & Connections | 11d | 2025-11-26 A | 2025-11-29 A | CON-LEG101-MB-1250, CON-LEG101-MB-1130 SS | 100% | 2025-12-07 | 2025-12-18 | Labor [745 h] | MKH2-02-002-MB-1060 | 0 | 0 | C1060 | 1 | Mobliza |
| CON-LEG101-MB-1130 |  | Install Site Facilities | 7d | 2025-11-26 A | 2025-11-27 A | CON-LEG101-MB-1250 | 100% | 2025-12-07 | 2025-12-14 | Labor [745 h] | MKH2-02-002-MB-1050 | 0 | 0 | C1050 | 1 | Mobliza |
| CON-LEG101-MB-1260 |  | Construct Site Access Roads | 3d | 2025-11-26 A | 2025-11-29 A | CON-LEG101-MB-1340 | 100% |  |  | Labor [745 h] | MKH2-02-002-MB-1020 | 0 | 0 | C1020 | 1 | Mobliza |
| CON-LEG101-MB-1270 |  | Clear & Grub for Offices & Access Road | 2d | 2025-11-26 A | 2025-11-27 A | CON-LEG101-MB-1340 | 100% |  |  | Labor [745 h] | MKH2-02-002-MB-1010 | 0 | 0 | C1010 | 1 | Mobliza |
| CON-LEG101-MB-1250 |  | Construct Temporary Fence | 7d | 2025-11-29 A | 2025-12-04 A | CON-LEG101-MB-1270 | 100% | 2025-11-29 | 2025-12-06 | Labor [745 h] | MKH2-02-002-MB-1030 | 0 | 0 | C1030 | 1 | Mobliza |
| CON-LEG101-MB-1110 |  | Construct Parking Sheds | 11d | 2025-12-28 A | 2026-01-06 A | CON-LEG101-MB-1250 | 100% | 2025-12-28 | 2026-01-08 | Labor [745 h] | MKH2-02-002-MB-1070 | 0 | 0 | C1070 | 1 | Mobliza |
| CON-LEG101-MB-1150 |  | Install Project Signs | 11d | 2025-12-28 A | 2025-12-30 A | CON-LEG101-MB-1260 | 100% | 2025-12-28 | 2026-01-08 | Labor [745 h] | MKH2-02-002-MB-1080 | 0 | 0 | C1080 | 1 | Mobliza |
|  | 1 | **Permit's and Authority Approvals** |  | 2025-11-19 | 2025-11-20 |  |  |  |  |  |  |  |  |  |  |  |
| CON-LEG101-PA-1000 |  | Excavation & Backfilling Permit Permit | 18d | 2025-11-19 A | 2025-11-20 A | CON-LEG101-MS-1090 SS | 100% | 2025-11-19 | 2025-12-09 | Skilled Labor [530 h] |  | 0 | 0 | C1120 | 1 | Mobliza |
| CON-LEG101-PA-1010 |  | Saudi Electricity Company Permit | 18d | 2025-11-19 A | 2025-11-20 A | CON-LEG101-MS-1090 SS | 100% | 2025-12-23 | 2026-01-12 | Skilled Labor [530 h] |  | 0 | 0 | C1130 | 1 | Mobliza |
| CON-LEG101-PA-1020 |  | Utility Clearance (NOC) Permit | 18d | 2025-11-19 A | 2025-11-20 A | CON-LEG101-MS-1090 SS | 100% | 2025-12-23 | 2026-01-12 | Skilled Labor [530 h] |  | 0 | 0 | C1530 | 1 | Mobliza |
| CON-LEG101-PA-1030 |  | Landscaping & Irrigation Works Permit Permit | 18d | 2025-11-19 A | 2025-11-20 A | CON-LEG101-MS-1090 SS | 100% | 2025-12-21 | 2026-01-10 | Skilled Labor [530 h] |  | 0 | 0 | C1540 | 1 | Mobliza |
| CON-LEG101-PA-1040 |  | Material Transportation Permit (MOT) | 18d | 2025-11-19 A | 2025-11-20 A | CON-LEG101-MS-1090 SS | 100% | 2025-12-16 | 2026-01-05 | Skilled Labor [530 h] |  | 0 | 0 | C1550 | 1 | Mobliza |
|  | 3 | **Preliminary Submittals** |  | 2025-11-19 | 2026-03-04 |  |  |  |  |  |  |  |  |  |  |  |
|  | 1 | **Preparation and Submittal by Contractor's** |  | 2025-11-19 | 2025-12-28 |  |  |  |  |  |  |  |  |  |  |  |
| CON-LEG101-PS-1000 |  | Preparation and Submittal of Detailed Work Order Programme (baseline schedule) | 20d | 2025-11-19 A | 2025-12-16 A | CON-LEG101-MS-1090 SS | 100% | 2025-11-19 | 2025-12-11 | Skilled Labor [530 h] | MKH2-02-002-PS-1010 | 0 | 0 | C1150 | 1 | Mobliza |
| CON-LEG101-PS-1010 |  | Preparation and Submittal of Project Execution Plan | 11d | 2025-11-25 A | 2025-12-27 A | CON-LEG101-MB-1260 | 100% | 2025-11-30 | 2025-12-11 | Skilled Labor [530 h] | MKH2-02-002-PS-1020 | 0 | 0 | C1160 | 1 | Mobliza |
| CON-LEG101-PS-1020 |  | Preparation and Submittal of Quality Management Plan | 11d | 2025-11-25 A | 2025-12-28 A | CON-LEG101-MB-1260 | 100% | 2025-11-30 | 2025-12-11 | Skilled Labor [530 h] | MKH2-02-002-PS-1030 | 0 | 0 | C1170 | 1 | Mobliza |
| CON-LEG101-PS-1070 |  | Preparation and Submittal of Organization Chart | 11d | 2025-11-25 A | 2025-11-25 A | CON-LEG101-MB-1260 | 100% | 2025-11-30 | 2025-12-11 | Skilled Labor [555 h] | MKH2-02-002-PS-1120 | 0 | 0 | C1260 | 1 | Mobliza |
| CON-LEG101-PS-1030 |  | Preparation and Submittal of Safety Management Plan | 11d | 2025-12-10 A | 2025-12-10 A | CON-LEG101-MB-1260 | 100% | 2025-11-30 | 2025-12-11 | Skilled Labor [530 h] | MKH2-02-002-PS-1060 | 0 | 0 | C1200 | 1 | Mobliza |
| CON-LEG101-PS-1050 |  | Preparation and Submittal of Project Security Management Plan | 11d | 2025-12-10 A | 2025-12-10 A | CON-LEG101-MB-1260 | 100% | 2025-11-30 | 2025-12-11 | Skilled Labor [530 h] | MKH2-02-002-PS-1080 | 0 | 0 | C1220 | 1 | Mobliza |
| CON-LEG101-PS-1040 |  | Preparation and Submittal of Risk Plan | 11d | 2025-12-15 A | 2025-12-15 A | CON-LEG101-MB-1260 | 100% | 2025-11-30 | 2025-12-11 | Skilled Labor [530 h] | MKH2-02-002-PS-1070 | 0 | 0 | C1210 | 1 | Mobliza |
| CON-LEG101-PS-1060 |  | Preparation and Submittal of Project Waste Management Plan | 11d | 2025-12-15 A | 2025-12-27 A | CON-LEG101-MB-1260 | 100% | 2025-12-20 | 2025-12-31 | Skilled Labor [530 h] | MKH2-02-002-PS-1090 | 0 | 0 | C1230 | 1 | Mobliza |

| ID | WBS | Activity | Duration | Start | Finish | Predecessors | Complete | Planned start | Planned finish | Resources | USERTEXT | Weight 1 | Total Weight % | Mapping Sheet Activity ID | % A | JEDDAH 1 - Area Name |
| --- | --- | --- | --- | --- | --- | --- | --- | --- | --- | --- | --- | --- | --- | --- | --- | --- |
|  | 2 | **Approval by the Employer's** |  | 2025-12-17 | 2026-03-04 |  |  |  |  |  |  |  |  |  |  |  |
| CON-LEG101-PS-1090 |  | Approval of Detailed Work Order Programme (baseline schedule) | 6d | 2025-12-17 A | 2025-12-18 A | CON-LEG101-PS-1000 | 100% | 2025-12-17 | 2025-12-23 | Skilled Labor [490 h] | MKH2-02-002-PS-1150 | 0 | 0 | C1290 | 1 | Mobliza |
| CON-LEG101-PS-1130 |  | Approval of Risk Plan | 6d | 2025-12-18 A | 2025-12-18 A | CON-LEG101-PS-1040 | 100% | 2025-12-20 | 2025-12-25 | Skilled Labor [490 h] | MKH2-02-002-PS-1210 | 0 | 0 | C1350 | 1 | Mobliza |
| CON-LEG101-PS-1160 |  | Approval of Organization Chart | 6d | 2026-01-08 A | 2026-01-08 A | CON-LEG101-PS-1070 | 100% | 2026-01-14 | 2026-01-20 | Skilled Labor [490 h] | MKH2-02-002-PS-1260 | 0 | 0 | C1400 | 1 | Mobliza |
| CON-LEG101-PS-1170 |  | Approval of Comminumcation Plan | 6d | 2026-01-15 A | 2026-01-15 A | CON-LEG101-MB-1260 | 100% | 2026-01-15 | 2026-01-21 | Skilled Labor [490 h] | MKH2-02-002-PS-1270 | 0 | 0 | C1410 | 1 | Mobliza |
| CON-LEG101-PS-1120 |  | Approval of Safety Management Plan | 6d | 2026-02-03 A | 2026-03-04 A | CON-LEG101-PS-1030 | 100% | 2026-03-07 | 2026-03-12 | Skilled Labor [490 h] | MKH2-02-002-PS-1200 | 0 | 0 | C1340 | 1 | Mobliza |
| CON-LEG101-PS-1140 |  | Approval of Project Security Management Plan | 6d | 2026-02-03 A | 2026-02-03 A | CON-LEG101-PS-1050 | 100% | 2026-03-29 | 2026-04-04 | Skilled Labor [490 h] | MKH2-02-002-PS-1220 | 0 | 0 | C1360 | 1 | Mobliza |
| CON-LEG101-PS-1150 |  | Approval of Project Waste Management Plan | 6d | 2026-02-03 A | 2026-02-03 A | CON-LEG101-PS-1060 | 100% | 2026-03-29 | 2026-04-04 | Skilled Labor [490 h] | MKH2-02-002-PS-1230 | 0 | 0 | C1370 | 1 | Mobliza |
| CON-LEG101-PS-1100 |  | Approval of Project Execution Plan | 6d | 2026-02-05 A | 2026-02-05 A | CON-LEG101-PS-1010 | 100% | 2026-02-07 | 2026-02-12 | Skilled Labor [490 h] | MKH2-02-002-PS-1160 | 0 | 0 | C1300 | 1 | Mobliza |
| CON-LEG101-PS-1110 |  | Approval of Quality Management Plan | 6d | 2026-02-09 A | 2026-02-09 A | CON-LEG101-PS-1020 | 100% | 2026-02-18 | 2026-02-25 | Skilled Labor [490 h] | MKH2-02-002-PS-1170 | 0 | 0 | C1310 | 1 | Mobliza |
|  | 3 | **Engineering** |  | 2025-12-01 | 2026-11-21 |  |  |  |  |  |  |  |  |  |  |  |
|  | 2 | **Shop Drawings** |  | 2025-12-04 | 2026-11-21 |  |  |  |  |  |  |  |  |  |  |  |
|  | 1 | **Shop Drawings Submittal** |  | 2025-12-04 | 2026-11-14 |  |  |  |  |  |  |  |  |  |  |  |
|  | 6 | **Shop Drawings Submittal for Stormwater Utilities** |  | 2026-01-01 | 2026-01-01 |  |  |  |  |  |  |  |  |  |  |  |
| CON-LEG101-EN-1510 |  | Shop DWG Submittal for Stormwater Utilities | 9d | 2026-01-01 A | 2026-01-01 A | CON-LEG101-TP-1330 | 100% | 2026-01-01 | 2026-01-11 | Engineer & Technician [115 h] | MKH2-02-002-EN-1210 | 0 | 0 | D1210 | 1 | SD |
| CON-LEG101-EN-1520 |  | Shop DWG Submittal for Stormwater Utilities Profiles | 9d | 2026-01-01 A | 2026-01-01 A | CON-LEG101-EN-1510 SS | 100% | 2026-01-01 | 2026-01-11 | Engineer & Technician [115 h] | MKH2-02-002-EN-1220 | 0 | 0 | D1220 | 1 | SD |
| CON-LEG101-EN-1530 |  | Shop DWG Submittal for Stormwater Utilities Standard Details | 9d | 2026-01-01 A | 2026-01-01 A | CON-LEG101-EN-1510 SS, CON-LEG101-EN-1520 | 100% | 2026-01-12 | 2026-01-21 | Engineer & Technician [115 h] | MKH2-02-002-EN-1230 | 0 | 0 | D1230 | 1 | SD |
|  | 5 | **Shop Drawings Submittal for Sanitary Sewerage** |  | 2025-12-16 | 2025-12-16 |  |  |  |  |  |  |  |  |  |  |  |
| CON-LEG101-EN-1480 |  | Shop DWG Submittal for Sanitary Sewerage | 9d | 2025-12-16 A | 2025-12-16 A | CON-LEG101-EN-1510 | 100% | 2025-12-09 | 2025-12-18 | Engineer & Technician [115 h] | MKH2-02-002-EN-1180 | 0 | 0 | D1180 | 1 | SD |
| CON-LEG101-EN-1490 |  | Shop DWG Submittal for Sanitary Sewerage Profiles | 9d | 2025-12-16 A | 2025-12-16 A | CON-LEG101-EN-1480 SS | 100% | 2025-12-09 | 2025-12-18 | Engineer & Technician [115 h] | MKH2-02-002-EN-1190 | 0 | 0 | D1190 | 1 | SD |
| CON-LEG101-EN-1500 |  | Shop DWG Submittal for Sanitary Sewerage Standard Details | 9d | 2025-12-16 A | 2025-12-16 A | CON-LEG101-EN-1490 SS | 100% | 2025-12-09 | 2025-12-18 | Engineer & Technician [115 h] | MKH2-02-002-EN-1200 | 0 | 0 | D1200 | 1 | SD |
|  | 4 | **Shop Drawings Submittal for TSE Network** |  | 2026-01-03 | 2026-01-04 |  |  |  |  |  |  |  |  |  |  |  |
| CON-LEG101-EN-1450 |  | Shop DWG Submittal for TSE Network | 5d | 2026-01-03 A | 2026-01-04 A | CON-LEG101-EN-1480 | 100% | 2026-01-04 | 2026-01-08 | Engineer & Technician [115 h] | MKH2-02-002-EN-1150 | 0 | 0 | D1150 | 1 | SD |
| CON-LEG101-EN-1460 |  | Shop DWG Submittal for TSE Profiles | 5d | 2026-01-03 A | 2026-01-04 A | CON-LEG101-EN-1450 SS | 100% | 2026-01-04 | 2026-01-08 | Engineer & Technician [115 h] | MKH2-02-002-EN-1160 | 0 | 0 | D1160 | 1 | SD |
| CON-LEG101-EN-1470 |  | Shop DWG Submittal for TSE Standard Details | 5d | 2026-01-03 A | 2026-01-04 A | CON-LEG101-EN-1460 SS | 100% | 2026-01-04 | 2026-01-08 | Engineer & Technician [115 h] | MKH2-02-002-EN-1170 | 0 | 0 | D1170 | 1 | SD |

| ID | WBS | Activity | Duration | Start | Finish | Predecessors | Complete | Planned start | Planned finish | Total float | Free float | Resources | USERTEXT | Weight 1 | Total Weight % | Mapping Sheet Activity ID | % A | JEDDAH 1 - Area Name | EV | Cost Varince( User Field) | Cost Varince( User Field) % | Responsibilities |
| --- | --- | --- | --- | --- | --- | --- | --- | --- | --- | --- | --- | --- | --- | --- | --- | --- | --- | --- | --- | --- | --- | --- |
|  | 3 | **Shop Drawings Submittal for Public Water Utility Distribution** |  | 2026-01-04 | 2026-01-04 |  |  |  |  |  |  |  |  |  |  |  |  |  |  |  |  |  |
| CON-LEG101-EN-1420 |  | Shop DWG Submittal for Public Water Utility Distribution | 5d | 2026-01-04 A | 2026-01-04 A | CON-LEG101-EN-1450 SS | 100% | 2026-01-04 | 2026-01-08 |  |  | Engineer & Technician [115 h] | MKH2-02-002-EN-1120 | 0 | 0 | D1120 | 1 | SD |  |  |  |  |
| CON-LEG101-EN-1430 |  | Shop DWG Submittal for Potable Water Profiles | 5d | 2026-01-04 A | 2026-01-04 A | CON-LEG101-EN-1420 SS | 100% | 2026-01-04 | 2026-01-08 |  |  | Engineer & Technician [115 h] | MKH2-02-002-EN-1130 | 0 | 0 | D1130 | 1 | SD |  |  |  |  |
| CON-LEG101-EN-1440 |  | Shop DWG Submittal for Potable Water Standard Details | 5d | 2026-01-04 A | 2026-01-04 A | CON-LEG101-EN-1430 SS | 100% | 2026-01-04 | 2026-01-08 |  |  | Engineer & Technician [115 h] | MKH2-02-002-EN-1140 | 0 | 0 | D1140 | 1 | SD |  |  |  |  |
|  | 2 | **Shop Drawings Submittal for Electrical Network** |  | 2025-12-17 | 2026-11-14 |  |  |  |  |  |  |  |  |  |  |  |  |  |  |  |  |  |
| CON-LEG101-EN-1410 |  | Shop DWG Submittal for Low Voltage Network | 9d | 2025-12-17 A | 2025-12-17 A | CON-LEG101-EN-1390 SS | 100% | 2026-01-01 | 2026-01-11 |  |  | Engineer & Technician [120 h] | MKH2-02-002-EN-1110 | 0 | 0 | D1110 | 1 | SD |  |  |  |  |
| CON-LEG101-EN-1400 |  | Shop DWG Submittal for Street Lighting | 9d | 2025-12-18 A | 2025-12-18 A | CON-LEG101-EN-1390 SS | 100% | 2026-01-05 | 2026-01-14 |  |  | Engineer & Technician [120 h] | MKH2-02-002-EN-1100 | 0 | 0 | D1100 | 1 | SD |  |  |  |  |
| CON-LEG101-EN-1390 |  | Shop DWG Submittal for Medium Voltage Network | 9d | 2026-11-04 | 2026-11-14 | CON-LEG101-EN-1420, CON-LEG101-MS-1080 |  |  |  | -67d | 0d | Engineer & Technician [120 h] | MKH2-02-002-EN-1090 | 0 | 0 | D1090 |  | SD |  |  |  |  |
|  | 8 | **Shop Drawings Submittal for Telecommunications** |  | 2025-12-17 | 2025-12-17 |  |  |  |  |  |  |  |  |  |  |  |  |  |  |  |  |  |
| CON-LEG101-EN-3190 |  | Shop DWG Submittal for Telecommunications Works | 9d | 2025-12-17 A | 2025-12-17 A | CON-LEG101-EN-1420 | 100% | 2026-01-01 | 2026-01-11 |  |  | Engineer & Technician [120 h] | MKH2-02-002-EN-1320 | 0 | 0 | D3880 | 1 | SD |  |  |  |  |
|  | 9 | **Shop Drawings Submittal for CCTV feeding system and GSM** |  | 2025-12-17 | 2025-12-17 |  |  |  |  |  |  |  |  |  |  |  |  |  |  |  |  |  |
| CON-LEG101-EN-3200 |  | Shop DWG Submittal for CCTV feeding system and GSM | 9d | 2025-12-17 A | 2025-12-17 A | CON-LEG101-EN-1420 | 100% | 2026-01-05 | 2026-01-14 |  |  | Engineer & Technician [120 h] | MKH2-02-002-EN-1320 | 0 | 0 | D3920 | 1 | SD |  |  |  |  |
|  | 10 | **Shop Drawings Submittal for Earthing System** |  | 2025-12-18 | 2025-12-18 |  |  |  |  |  |  |  |  |  |  |  |  |  |  |  |  |  |
| CON-LEG101-EN-3210 |  | Shop DWG Submittal for Earthing System | 9d | 2025-12-18 A | 2025-12-18 A | CON-LEG101-EN-1420 | 100% | 2026-01-08 | 2026-01-18 |  |  | Engineer & Technician [120 h] | MKH2-02-002-EN-1320 | 0 | 0 | D3960 | 1 | SD |  |  |  |  |
|  | 11 | **Shop Drawings Submittal for Road Lighting** |  | 2025-12-18 | 2025-12-18 |  |  |  |  |  |  |  |  |  |  |  |  |  |  |  |  |  |
| CON-LEG101-EN-1260 |  | Shop DWG Submittal for Street Lighting General Arrangement | 15d | 2025-12-18 A | 2025-12-18 A | CON-LEG101-EN-1420 | 100% | 2026-01-08 | 2026-01-25 |  |  | Engineer & Technician [120 h] |  |  |  | C03-E-SL-1560 | 1 | SD | 17102.23 | 0 | 0 | EN |
| CON-LEG101-EN-1270 |  | Shop DWG Submittal for Street Lighting Network Layout | 15d | 2025-12-18 A | 2025-12-18 A | CON-LEG101-EN-1260 SS | 100% | 2026-01-08 | 2026-01-25 |  |  | Engineer & Technician [120 h] |  |  |  | C03-E-SL-1570 | 1 | SD | 17102.23 | 0 | 0 | EN |
| CON-LEG101-EN-1280 |  | Shop DWG Submittal for Street Lighting Details | 15d | 2025-12-18 A | 2025-12-18 A | CON-LEG101-EN-1270 SS | 100% | 2026-01-08 | 2026-01-25 |  |  | Engineer & Technician [120 h] |  |  |  | C03-E-SL-1580 | 1 | SD | 17102.23 | 0 | 0 | EN |
| CON-LEG101-EN-1290 |  | Shop DWG Submittal for Street Lighting Single Line Diagram | 15d | 2025-12-18 A | 2025-12-18 A | CON-LEG101-EN-1280 SS | 100% | 2026-01-08 | 2026-01-25 |  |  | Engineer & Technician [120 h] |  |  |  | C03-E-SL-1590 | 1 | SD | 17102.23 | 0 | 0 | EN |
|  | 1 | **Shop Drawings Submittal for Road Works** |  | 2025-12-04 | 2025-12-06 |  |  |  |  |  |  |  |  |  |  |  |  |  |  |  |  |  |
| CON-LEG101-EN-1300 |  | Shop DWG Submittal for Topographic Survey | 6d | 2025-12-04 A | 2025-12-06 A | CON-LEG101-TP-1330, CON-LEG101-EN-1420 | 100% | 2025-12-25 | 2025-12-31 |  |  | Engineer & Technician [120 h] | MKH2-02-002-EN-1000 | 0 | 0 | D1000 | 1 | SD |  |  |  |  |
| CON-LEG101-EN-1310 |  | Shop DWG Submittal for Road Layout Plan | 6d | 2025-12-04 A | 2025-12-06 A | CON-LEG101-TP-1330, CON-LEG101-EN-1300 | 100% | 2026-01-01 | 2026-01-07 |  |  | Engineer & Technician [120 h] | MKH2-02-002-EN-1010 | 0 | 0 | D1010 | 1 | SD |  |  |  |  |
| CON-LEG101-EN-1320 |  | Shop DWG Submittal for Typical Cross Section | 6d | 2025-12-04 A | 2025-12-06 A | CON-LEG101-TP-1330, CON-LEG101-EN-1310 SS | 100% | 2026-01-01 | 2026-01-07 |  |  | Engineer & Technician [120 h] | MKH2-02-002-EN-1020 | 0 | 0 | D1020 | 1 | SD |  |  |  |  |
| CON-LEG101-EN-1330 |  | Shop DWG Submittal for Road Setting Out | 6d | 2025-12-04 A | 2025-12-06 A | CON-LEG101-TP-1330, CON-LEG101-EN-1310 SS | 100% | 2026-01-01 | 2026-01-07 |  |  | Engineer & Technician [120 h] | MKH2-02-002-EN-1030 | 0 | 0 | D1030 | 1 | SD |  |  |  |  |
| CON-LEG101-EN-1340 |  | Shop DWG Submittal for Road Profiles | 6d | 2025-12-04 A | 2025-12-06 A | CON-LEG101-TP-1330, CON-LEG101-EN-1300 | 100% | 2026-01-01 | 2026-01-07 |  |  | Engineer & Technician [120 h] | MKH2-02-002-EN-1040 | 0 | 0 | D1040 | 1 | SD |  |  |  |  |

| ID | WBS | Activity | Duration | Start | Finish | Predecessors | Complete | Planned start | Planned finish | Resources | Mapping Sheet Activity ID | EV | Cost Varince( User Field) | Cost Varince( User Field) % | % A | Responsibilities | JEDDAH 1 - Area Name | USERTEXT | Weight 1 | Total Weight % |
| --- | --- | --- | --- | --- | --- | --- | --- | --- | --- | --- | --- | --- | --- | --- | --- | --- | --- | --- | --- | --- |
|  | 14 | **Shop Drawings Submittal for Bridge Works** |  | 2025-12-31 | 2025-12-31 |  |  |  |  |  |  |  |  |  |  |  |  |  |  |  |
| CON-LEG101-EN-1020 |  | Shop DWG Submittal for Piles Setting out and Reinforcement Details | 15d | 2025-12-31 A | 2025-12-31 A | CON-LEG101-MB-1000 | 100% | 2025-12-31 | 2026-01-17 | Engineer & Technician [120 h] | C03-E-BR-1020 | 17102.23 | 0 | 0 | 1 | EN | SD |  |  |  |
| CON-LEG101-EN-1030 |  | Shop DWG Submittal for Abutment Setting out and Reinforcement Details | 15d | 2025-12-31 A | 2025-12-31 A | CON-LEG101-MB-1000 | 100% | 2025-12-31 | 2026-01-17 | Engineer & Technician [120 h] | C03-E-BR-1030 | 17102.23 | 0 | 0 | 1 | EN | SD |  |  |  |
| CON-LEG101-EN-1040 |  | Shop DWG Submittal for Pier and Pilecap Setting out and Reinforcement Details | 15d | 2025-12-31 A | 2025-12-31 A | CON-LEG101-MB-1000, CON-LEG101-EN-1030 SS | 100% | 2025-12-31 | 2026-01-17 | Engineer & Technician [120 h] | C03-E-BR-1040 | 17102.23 | 0 | 0 | 1 | EN | SD |  |  |  |
| CON-LEG101-EN-1060 |  | Shop DWG Submittal for Deck Slab Setting out and Reinforcement Details | 15d | 2025-12-31 A | 2025-12-31 A | CON-LEG101-MB-1000 | 100% | 2025-12-31 | 2026-01-17 | Engineer & Technician [120 h] | C03-E-BR-1070 | 0 | -12826.6725 | -0.75 | 1 | EN | SD |  |  |  |
| CON-LEG101-EN-1070 |  | Shop DWG Submittal for Bearing Setting out and Details | 15d | 2025-12-31 A | 2025-12-31 A | CON-LEG101-MB-1000, CON-LEG101-EN-1090 SS | 100% | 2025-12-31 | 2026-01-17 | Engineer & Technician [120 h] | C03-E-BR-1080 | 0 | 0 | 0 | 1 | EN | SD |  |  |  |
| CON-LEG101-EN-1080 |  | Shop DWG Submittal for Deflection Diagram | 15d | 2025-12-31 A | 2025-12-31 A | CON-LEG101-MB-1000, CON-LEG101-EN-1020 SS | 100% | 2025-12-31 | 2026-01-17 | Engineer & Technician [120 h] | C03-E-BR-1090 | 17102.23 | 17102.23 | 1 | 1 | EN | SD |  |  |  |
| CON-LEG101-EN-1090 |  | Shop DWG Submittal for Appron Slab Details | 15d | 2025-12-31 A | 2025-12-31 A | CON-LEG101-MB-1000, CON-LEG101-EN-1060 SS | 100% | 2025-12-31 | 2026-01-17 | Engineer & Technician [120 h] | C03-E-BR-1100 | 0 | 0 | 0 | 1 | EN | SD |  |  |  |
| CON-LEG101-EN-1100 |  | Shop DWG Submittal for Finishing Works Details | 15d | 2025-12-31 A | 2025-12-31 A | CON-LEG101-MB-1000, CON-LEG101-EN-1070 SS | 100% | 2025-12-31 | 2026-01-17 | Engineer & Technician [120 h] | C03-E-BR-1120 | 0 | 0 | 0 | 1 | EN | SD |  |  |  |
|  | 12 | **Shop Drawings Submittal for Irrigation Works** |  | 2026-01-10 | 2026-01-10 |  |  |  |  |  |  |  |  |  |  |  |  |  |  |  |
| CON-LEG101-EN-3220 |  | Shop DWG Submittal for Secondary Irrigation Pipe Works | 9d | 2026-01-10 A | 2026-01-10 A | CON-LEG101-MB-1000 | 100% | 2026-01-14 | 2026-01-24 | Engineer & Technician [115 h] | D4040 |  |  |  | 1 |  | SD | MKH2-02-002-EN-1320 | 0 | 0 |
| CON-LEG101-EN-3230 |  | Shop DWG Submittal for Secondary Irrigation Valves and Controller Works | 9d | 2026-01-10 A | 2026-01-10 A | CON-LEG101-EN-3220 SS | 100% | 2026-01-14 | 2026-01-24 | Engineer & Technician [115 h] | D4050 |  |  |  | 1 |  | SD | MKH2-02-002-EN-1340 | 0 | 0 |
|  | 13 | **Shop Drawings Submittal for Landscape Works** |  | 2026-01-10 | 2026-01-10 |  |  |  |  |  |  |  |  |  |  |  |  |  |  |  |
| CON-LEG101-EN-3240 |  | Shop DWG Submittal for Preparation Works | 9d | 2026-01-10 A | 2026-01-10 A | CON-LEG101-EN-3220 SS | 100% | 2026-02-07 | 2026-02-16 | Engineer & Technician [115 h] | D4080 |  |  |  | 1 |  | SD | MKH2-02-002-EN-1320 | 0 | 0 |
| CON-LEG101-EN-3250 |  | Shop DWG Submittal for Placing Agricutural Soil works | 9d | 2026-01-10 A | 2026-01-10 A | CON-LEG101-EN-3240 SS | 100% | 2026-02-07 | 2026-02-16 | Engineer & Technician [115 h] | D4090 |  |  |  | 1 |  | SD | MKH2-02-002-EN-1340 | 0 | 0 |
| CON-LEG101-EN-3260 |  | Shop DWG Submittal for Planting Works | 9d | 2026-01-10 A | 2026-01-10 A | CON-LEG101-EN-3250 SS | 100% | 2026-02-07 | 2026-02-16 | Engineer & Technician [115 h] | D4100 |  |  |  | 1 |  | SD | MKH2-02-002-EN-1350 | 0 | 0 |
| CON-LEG101-EN-3270 |  | Shop DWG Submittal for Curb Setting Out Points | 9d | 2026-01-10 A | 2026-01-10 A | CON-LEG101-EN-3260 SS | 100% | 2026-02-07 | 2026-02-16 | Engineer & Technician [115 h] | D4110 |  |  |  | 1 |  | SD | MKH2-02-002-EN-1360 | 0 | 0 |
|  | 7 | **Shop Drawings Submittal for Fence & Gates** |  | 2025-12-06 | 2025-12-16 |  |  |  |  |  |  |  |  |  |  |  |  |  |  |  |
| CON-LEG101-EN-1540 |  | Shop DWG Submittal for the Fence & Gates - Civil Works | 9d | 2025-12-06 A | 2025-12-16 A | CON-LEG101-EN-3240 SS | 100% | 2025-12-20 | 2025-12-29 | Engineer & Technician [115 h] | D1270 |  |  |  | 1 |  | SD | MKH2-02-002-EN-1320 | 0 | 0 |
| CON-LEG101-EN-1550 |  | Shop DWG Submittal for the Fence & Gates - Mechanical Works | 9d | 2025-12-06 A | 2025-12-16 A | CON-LEG101-EN-1540 SS | 100% | 2025-12-20 | 2025-12-29 | Engineer & Technician [115 h] | D1290 |  |  |  | 1 |  | SD | MKH2-02-002-EN-1340 | 0 | 0 |
| CON-LEG101-EN-1560 |  | Shop DWG Submittal for the Fence & Gates - Finishing Works | 9d | 2025-12-06 A | 2025-12-16 A | CON-LEG101-EN-1550 SS | 100% | 2025-12-20 | 2025-12-29 | Engineer & Technician [115 h] | D1300 |  |  |  | 1 |  | SD | MKH2-02-002-EN-1350 | 0 | 0 |
|  | 2 | **Shop Drawings Approval** |  | 2025-12-08 | 2026-11-21 |  |  |  |  |  |  |  |  |  |  |  |  |  |  |  |
|  | 6 | **Shop Drawings Approval for Storm Network** |  | 2026-01-07 | 2026-02-03 |  |  |  |  |  |  |  |  |  |  |  |  |  |  |  |
| CON-LEG101-EN-1780 |  | Shop DWG Approval for Stormwater Utilities | 6d | 2026-01-07 A | 2026-02-03 A | CON-LEG101-EN-1510 | 100% | 2026-01-10 | 2026-01-15 | Engineer & Technician [115 h] | D1530 |  |  |  | 1 |  | SD | MKH2-02-002-EN-1580 | 0.00181721420513818 | 0.181721420513818 |
| CON-LEG101-EN-1790 |  | Shop DWG Approval for Stormwater UtilitiesProfiles | 6d | 2026-01-07 A | 2026-02-03 A | CON-LEG101-EN-1520, CON-LEG101-EN-1780 | 100% | 2026-01-17 | 2026-01-22 | Engineer & Technician [115 h] | D1540 |  |  |  | 1 |  | SD | MKH2-02-002-EN-1590 | 0.00181721420513818 | 0.181721420513818 |
| CON-LEG101-EN-1800 |  | Shop DWG Approval for Stormwater UtilitiesStandard Details | 6d | 2026-01-07 A | 2026-02-03 A | CON-LEG101-EN-1530, CON-LEG101-EN-1790 | 100% | 2026-01-24 | 2026-01-29 | Engineer & Technician [115 h] | D1550 |  |  |  | 1 |  | SD | MKH2-02-002-EN-1600 | 0.00181721420513818 | 0.181721420513818 |

| ID | WBS | Activity | Duration | Start | Finish | Predecessors | Complete | Planned start | Planned finish | Total float | Free float | Resources | USERTEXT | Weight 1 | Total Weight % | Mapping Sheet Activity ID | % A | JEDDAH 1 - Area Name |
| --- | --- | --- | --- | --- | --- | --- | --- | --- | --- | --- | --- | --- | --- | --- | --- | --- | --- | --- |
|  | 5 | **Shop Drawings Approval for Sanitary Sewerage** |  | 2025-12-17 | 2026-01-14 |  |  |  |  |  |  |  |  |  |  |  |  |  |
| CON-LEG101-EN-1750 |  | Shop DWG Approval for Sanitary Sewerage | 6d | 2025-12-17 A | 2026-01-14 A | CON-LEG101-EN-1480 | 100% | 2025-12-27 | 2026-01-01 |  |  | Engineer & Technician [115 h] | MKH2-02-002-EN-1550 | 0.000655862565683969 | 0.0655862565683969 | D1500 | 1 | SD |
| CON-LEG101-EN-1760 |  | Shop DWG Approval for Sanitary Sewerage Profiles | 6d | 2025-12-17 A | 2026-01-14 A | CON-LEG101-EN-1490 | 100% | 2025-12-27 | 2026-01-01 |  |  | Engineer & Technician [115 h] | MKH2-02-002-EN-1560 | 0.000655862565683969 | 0.0655862565683969 | D1510 | 1 | SD |
| CON-LEG101-EN-1770 |  | Shop DWG Approval for Sanitary Sewerage Standard Details | 6d | 2025-12-17 A | 2026-01-14 A | CON-LEG101-EN-1500 | 100% | 2025-12-27 | 2026-01-01 |  |  | Engineer & Technician [115 h] | MKH2-02-002-EN-1570 | 0.000655862565683969 | 0.0655862565683969 | D1520 | 1 | SD |
|  | 4 | **Shop Drawings Approval for TSE Network** |  | 2026-01-08 | 2026-01-20 |  |  |  |  |  |  |  |  |  |  |  |  |  |
| CON-LEG101-EN-1720 |  | Shop DWG Approval for TSE Network | 6d | 2026-01-08 A | 2026-01-20 A | CON-LEG101-EN-1450 | 100% | 2026-01-10 | 2026-01-15 |  |  | Engineer & Technician [115 h] | MKH2-02-002-EN-1520 | 0.00026192432990319 | 0.026192432990319 | D1470 | 1 | SD |
| CON-LEG101-EN-1730 |  | Shop DWG Approval for TSE Profiles | 6d | 2026-01-08 A | 2026-01-20 A | CON-LEG101-EN-1460 | 100% | 2026-01-10 | 2026-01-15 |  |  | Engineer & Technician [115 h] | MKH2-02-002-EN-1530 | 0.00026192432990319 | 0.026192432990319 | D1480 | 1 | SD |
| CON-LEG101-EN-1740 |  | Shop DWG Approval for TSE Standard Details | 6d | 2026-01-08 A | 2026-01-20 A | CON-LEG101-EN-1470 | 100% | 2026-01-10 | 2026-01-15 |  |  | Engineer & Technician [115 h] | MKH2-02-002-EN-1540 | 0.00026192432990319 | 0.026192432990319 | D1490 | 1 | SD |
|  | 3 | **Shop Drawings Approval for Public Water Utility Distribution** |  | 2026-01-10 | 2026-01-15 |  |  |  |  |  |  |  |  |  |  |  |  |  |
| CON-LEG101-EN-1690 |  | Shop DWG Approval for Public Water Utility Distribution | 6d | 2026-01-10 A | 2026-01-15 A | CON-LEG101-EN-1420 | 100% | 2026-01-14 | 2026-01-20 |  |  | Engineer & Technician [115 h] | MKH2-02-002-EN-1490 | 0.000402108835962306 | 0.0402108835962306 | D1440 | 1 | SD |
| CON-LEG101-EN-1700 |  | Shop DWG Approval for Potable Water Profiles | 6d | 2026-01-10 A | 2026-01-15 A | CON-LEG101-EN-1430 | 100% | 2026-01-14 | 2026-01-20 |  |  | Engineer & Technician [115 h] | MKH2-02-002-EN-1500 | 0.000402108835962306 | 0.0402108835962306 | D1450 | 1 | SD |
| CON-LEG101-EN-1710 |  | Shop DWG Approval for Potable Water Standard Details | 6d | 2026-01-10 A | 2026-01-15 A | CON-LEG101-EN-1440 | 100% | 2026-01-14 | 2026-01-20 |  |  | Engineer & Technician [115 h] | MKH2-02-002-EN-1510 | 0.000402108835962306 | 0.0402108835962306 | D1460 | 1 | SD |
|  | 2 | **Shop Drawings Approval for Electrical Network** |  | 2025-12-23 | 2026-11-21 |  |  |  |  |  |  |  |  |  |  |  |  |  |
| CON-LEG101-EN-1670 |  | Shop DWG Approval for Street Lighting | 6d | 2025-12-23 A | 2026-02-28 A | CON-LEG101-EN-1400 | 100% | 2026-01-08 | 2026-01-14 |  |  | Engineer & Technician [115 h] | MKH2-02-002-EN-1470 | 0.00147340149191714 | 0.147340149191714 | D1420 | 1 | SD |
| CON-LEG101-EN-1680 |  | Shop DWG Approval for Low Voltage Network | 6d | 2025-12-23 A | 2025-12-23 A | CON-LEG101-EN-1410 | 100% | 2026-01-08 | 2026-01-14 |  |  | Engineer & Technician [115 h] | MKH2-02-002-EN-1480 | 0.0014734013779999 | 0.14734013779999 | D1430 | 1 | SD |
| CON-LEG101-EN-1660 |  | Shop DWG Approval for Medium Voltage Network | 6d | 2026-11-15 | 2026-11-21 | CON-LEG101-EN-1390 |  |  |  | -67d | 0d | Engineer & Technician [115 h] | MKH2-02-002-EN-1460 | 0.00147340149191714 | 0.147340149191714 | D1410 |  | SD |
|  | 8 | **Shop Drawings Approval for Telecommunications** |  | 2025-12-27 | 2026-04-05 |  |  |  |  |  |  |  |  |  |  |  |  |  |
| CON-LEG101-EN-3280 |  | Shop DWG Approval for Telecommunications Works | 6d | 2025-12-27 A | 2026-04-05 A | CON-LEG101-EN-3190 | 100% | 2026-01-12 | 2026-01-18 |  |  | Engineer & Technician [115 h] | MKH2-02-002-EN-1460 | 0.00147340149191714 | 0.147340149191714 | D4120 | 1 | SD |
|  | 9 | **Shop Drawings Approval for CCTV feeding system and GSM** |  | 2026-02-14 | 2026-02-14 |  |  |  |  |  |  |  |  |  |  |  |  |  |
| CON-LEG101-EN-3290 |  | Shop DWG Approval for CCTV feeding system and GSM | 6d | 2026-02-14 A | 2026-02-14 A | CON-LEG101-EN-3200 | 100% | 2026-02-14 | 2026-02-19 |  |  | Engineer & Technician [115 h] | MKH2-02-002-EN-1460 | 0.00147340149191714 | 0.147340149191714 | D4150 | 1 | SD |
|  | 10 | **Shop Drawings Approval for Earthing System** |  | 2025-12-23 | 2025-12-23 |  |  |  |  |  |  |  |  |  |  |  |  |  |
| CON-LEG101-EN-3300 |  | Shop DWG Approval for Earthing System | 6d | 2025-12-23 A | 2025-12-23 A | CON-LEG101-EN-3210 | 100% | 2026-01-19 | 2026-01-25 |  |  | Engineer & Technician [115 h] | MKH2-02-002-EN-1460 | 0.00147340149191714 | 0.147340149191714 | D4180 | 1 | SD |
|  | 11 | **Shop Drawings Approval for Road Lighting** |  | 2025-12-23 | 2026-02-28 |  |  |  |  |  |  |  |  |  |  |  |  |  |
| CON-LEG101-EN-3310 |  | Shop DWG Approval for Street Lighting General Arrangement | 6d | 2025-12-23 A | 2026-02-28 A | CON-LEG101-EN-1260 SS+3d | 100% | 2026-01-12 | 2026-01-18 |  |  | Engineer & Technician [115 h] | MKH2-02-002-EN-1460 | 0.00147340149191714 | 0.147340149191714 | D4210 | 1 | SD |
| CON-LEG101-EN-3320 |  | Shop DWG Approval for Street Lighting Network Layout | 6d | 2025-12-23 A | 2026-02-28 A | CON-LEG101-EN-1270 SS+3d | 100% | 2026-01-12 | 2026-01-18 |  |  | Engineer & Technician [115 h] | MKH2-02-002-EN-1470 | 0.00147340149191714 | 0.147340149191714 | D4220 | 1 | SD |
| CON-LEG101-EN-3330 |  | Shop DWG Approval for Street Lighting Details | 6d | 2025-12-23 A | 2026-02-28 A | CON-LEG101-EN-1280 SS+3d | 100% | 2026-01-12 | 2026-01-18 |  |  | Engineer & Technician [115 h] | MKH2-02-002-EN-1480 | 0.0014734013779999 | 0.14734013779999 | D4230 | 1 | SD |
| CON-LEG101-EN-3360 |  | Shop DWG Approval for Street Lighting Single Line Diagram | 6d | 2025-12-23 A | 2026-02-28 A | CON-LEG101-EN-1290 SS+3d | 100% | 2026-01-12 | 2026-01-18 |  |  | Engineer & Technician [115 h] | MKH2-02-002-EN-1480 | 0.0014734013779999 | 0.14734013779999 | D4390 | 1 | SD |

| ID | WBS | Activity | Duration | Start | Finish | Predecessors | Complete | Planned start | Planned finish | Resources | USERTEXT | Weight 1 | Total Weight % | Mapping Sheet Activity ID | % A | JEDDAH 1 - Area Name | EV | Cost Varince( User Field) | Cost Varince( User Field) % | Responsibilities |
| --- | --- | --- | --- | --- | --- | --- | --- | --- | --- | --- | --- | --- | --- | --- | --- | --- | --- | --- | --- | --- |
|  | 1 | **Shop Drawings Approval for Road Works** |  | 2025-12-08 | 2026-01-11 |  |  |  |  |  |  |  |  |  |  |  |  |  |  |  |
| CON-LEG101-EN-1570 |  | Shop DWG Approval for Topographic Survey | 15d | 2025-12-08 A | 2026-01-11 A | CON-LEG101-EN-1300 | 100% | 2026-01-01 | 2026-01-18 | Engineer & Technician [115 h] | MKH2-02-002-EN-1370 | 0.00114229524671769 | 0.114229524671769 | D1320 | 1 | SD |  |  |  |  |
| CON-LEG101-EN-1580 |  | Shop DWG Approval for Road Layout Plan | 10d | 2025-12-08 A | 2026-01-11 A | CON-LEG101-EN-1310 | 100% | 2026-01-08 | 2026-01-19 | Engineer & Technician [115 h] | MKH2-02-002-EN-1380 | 0.00114229524671769 | 0.114229524671769 | D1330 | 1 | SD |  |  |  |  |
| CON-LEG101-EN-1590 |  | Shop DWG Approval for Typical Cross Section | 10d | 2025-12-08 A | 2026-01-11 A | CON-LEG101-EN-1320 | 100% | 2026-01-08 | 2026-01-19 | Engineer & Technician [115 h] | MKH2-02-002-EN-1390 | 0.00114229524671769 | 0.114229524671769 | D1340 | 1 | SD |  |  |  |  |
| CON-LEG101-EN-1600 |  | Shop DWG Approval for Road Setting Out | 10d | 2025-12-08 A | 2026-01-11 A | CON-LEG101-EN-1330 | 100% | 2026-01-08 | 2026-01-19 | Engineer & Technician [115 h] | MKH2-02-002-EN-1400 | 0.00114229524671769 | 0.114229524671769 | D1350 | 1 | SD |  |  |  |  |
| CON-LEG101-EN-1610 |  | Shop DWG Approval for Road Profiles | 10d | 2025-12-08 A | 2026-01-11 A | CON-LEG101-EN-1340 | 100% | 2026-01-08 | 2026-01-19 | Engineer & Technician [115 h] | MKH2-02-002-EN-1410 | 0.00114229524671769 | 0.114229524671769 | D1360 | 1 | SD |  |  |  |  |
|  | 12 | **Shop Drawings Approval for Bridge Works** |  | 2026-01-11 | 2026-01-20 |  |  |  |  |  |  |  |  |  |  |  |  |  |  |  |
| CON-LEG101-EN-1150 |  | Shop DWG Approval for Piles Setting out and Reinforcement Details | 12d | 2026-01-11 A | 2026-01-11 A | CON-LEG101-EN-1020 | 100% | 2026-01-14 | 2026-01-27 | Engineer & Technician [115 h] |  |  |  | C03-E-BR-1170 | 1 | SD | 17102.23 | 0 | 0 | EN |
| CON-LEG101-EN-1160 |  | Shop DWG Approval for Abutment Setting out and Reinforcement Details | 12d | 2026-01-11 A | 2026-01-11 A | CON-LEG101-EN-1030 | 100% | 2026-01-14 | 2026-01-27 | Engineer & Technician [115 h] |  |  |  | C03-E-BR-1180 | 1 | SD | 17102.23 | 0 | 0 | EN |
| CON-LEG101-EN-1170 |  | Shop DWG Approval for Pier and Pilecap Setting out and Reinforcement Details | 12d | 2026-01-11 A | 2026-01-11 A | CON-LEG101-EN-1040 | 100% | 2026-01-14 | 2026-01-27 | Engineer & Technician [115 h] |  |  |  | C03-E-BR-1190 | 1 | SD | 17102.23 | 0 | 0 | EN |
| CON-LEG101-EN-1190 |  | Shop DWG Approval for Deck Slab Setting out and Reinforcement Details | 12d | 2026-01-11 A | 2026-01-11 A | CON-LEG101-EN-1060 | 100% | 2026-01-14 | 2026-01-27 | Engineer & Technician [115 h] |  |  |  | C03-E-BR-1210 | 1 | SD | 0 | -12826.6725 | -0.75 | EN |
| CON-LEG101-EN-1200 |  | Shop DWG Approval for Bearing Setting out and Details | 12d | 2026-01-11 A | 2026-01-11 A | CON-LEG101-EN-1070 | 100% | 2026-01-14 | 2026-01-27 | Engineer & Technician [115 h] |  |  |  | C03-E-BR-1220 | 1 | SD | 0 | 0 | 0 | EN |
| CON-LEG101-EN-1210 |  | Shop DWG Approval for Deflection Diagram | 12d | 2026-01-20 A | 2026-01-20 A | CON-LEG101-EN-1080 | 100% | 2026-01-21 | 2026-02-03 | Engineer & Technician [115 h] |  |  |  | C03-E-BR-1230 | 1 | SD | 17102.23 | 17102.23 | 1 | EN |
| CON-LEG101-EN-1220 |  | Shop DWG Approval for Appron Slab Details | 12d | 2026-01-20 A | 2026-01-20 A | CON-LEG101-EN-1090 | 100% | 2026-01-21 | 2026-02-03 | Engineer & Technician [115 h] |  |  |  | C03-E-BR-1240 | 1 | SD | 0 | 0 | 0 | EN |
| CON-LEG101-EN-1230 |  | Shop DWG Approval for Finishing Works Details | 12d | 2026-01-20 A | 2026-01-20 A | CON-LEG101-EN-1100 | 100% | 2026-01-21 | 2026-02-03 | Engineer & Technician [115 h] |  |  |  | C03-E-BR-1250 | 1 | SD | 0 | 0 | 0 | EN |
|  | 13 | **Shop Drawings Approval for Irrigation Works** |  | 2026-01-15 | 2026-01-15 |  |  |  |  |  |  |  |  |  |  |  |  |  |  |  |
| CON-LEG101-EN-3340 |  | Shop DWG Approval for Secondary Irrigation Pipe Works | 6d | 2026-01-15 A | 2026-01-15 A | CON-LEG101-EN-3220 | 100% | 2026-01-21 | 2026-01-27 | Engineer & Technician [115 h] | MKH2-02-002-EN-1460 | 0.00147340149191714 | 0.147340149191714 | D4330 | 1 | SD |  |  |  |  |
| CON-LEG101-EN-3350 |  | Shop DWG Approval for Secondary Irrigation Valves and Controller Works | 6d | 2026-01-15 A | 2026-01-15 A | CON-LEG101-EN-3230 | 100% | 2026-01-21 | 2026-01-27 | Engineer & Technician [115 h] | MKH2-02-002-EN-1470 | 0.00147340149191714 | 0.147340149191714 | D4340 | 1 | SD |  |  |  |  |
|  | 14 | **Shop Drawings Approval for Landscape Works** |  | 2026-01-14 | 2026-03-08 |  |  |  |  |  |  |  |  |  |  |  |  |  |  |  |
| CON-LEG101-EN-3370 |  | Shop DWG Approval for Preparation Works | 9d | 2026-01-14 A | 2026-03-08 A | CON-LEG101-EN-3240 | 100% | 2026-02-17 | 2026-02-28 | Engineer & Technician [115 h] | MKH2-02-002-EN-1320 | 0 | 0 | D4400 | 1 | SD |  |  |  |  |
| CON-LEG101-EN-3380 |  | Shop DWG Approval for Placing Agricutural Soil works | 9d | 2026-01-14 A | 2026-03-08 A | CON-LEG101-EN-3250 | 100% | 2026-02-17 | 2026-02-28 | Engineer & Technician [115 h] | MKH2-02-002-EN-1340 | 0 | 0 | D4410 | 1 | SD |  |  |  |  |
| CON-LEG101-EN-3390 |  | Shop DWG Approval for Planting Works | 9d | 2026-01-14 A | 2026-03-08 A | CON-LEG101-EN-3260 | 100% | 2026-02-17 | 2026-02-28 | Engineer & Technician [115 h] | MKH2-02-002-EN-1350 | 0 | 0 | D4420 | 1 | SD |  |  |  |  |
| CON-LEG101-EN-3400 |  | Shop DWG Approval for Curb Setting Out Points | 9d | 2026-01-14 A | 2026-03-08 A | CON-LEG101-EN-3270 | 100% | 2026-02-17 | 2026-02-28 | Engineer & Technician [115 h] | MKH2-02-002-EN-1360 | 0 | 0 | D4430 | 1 | SD |  |  |  |  |
|  | 7 | **Shop Drawings Approval forFence & Gates** |  | 2025-12-17 | 2026-01-26 |  |  |  |  |  |  |  |  |  |  |  |  |  |  |  |
| CON-LEG101-EN-3410 |  | Shop DWG Approval for the Fence & Gates - Civil Works | 9d | 2025-12-17 A | 2026-01-26 A | CON-LEG101-EN-1540 | 100% | 2025-12-16 | 2025-12-25 | Engineer & Technician [115 h] | MKH2-02-002-EN-1320 | 0 | 0 | D4440 | 1 | SD |  |  |  |  |
| CON-LEG101-EN-3420 |  | Shop DWG Approval for the Fence & Gates - Mechanical Works | 9d | 2025-12-17 A | 2026-01-26 A | CON-LEG101-EN-1550 | 100% | 2025-12-16 | 2025-12-25 | Engineer & Technician [115 h] | MKH2-02-002-EN-1340 | 0 | 0 | D4450 | 1 | SD |  |  |  |  |
| CON-LEG101-EN-3430 |  | Shop DWG Approval for the Fence & Gates - Finishing Works | 9d | 2025-12-17 A | 2026-01-26 A | CON-LEG101-EN-1560 | 100% | 2025-12-16 | 2025-12-25 | Engineer & Technician [115 h] | MKH2-02-002-EN-1350 | 0 | 0 | D4460 | 1 | SD |  |  |  |  |

| ID | WBS | Activity | Duration | Start | Finish | Predecessors | Complete | Planned start | Planned finish | Resources | USERTEXT | Weight 1 | Total Weight % | Mapping Sheet Activity ID | % A | JEDDAH 1 - Area Name |
| --- | --- | --- | --- | --- | --- | --- | --- | --- | --- | --- | --- | --- | --- | --- | --- | --- |
|  | 3 | **Method Statements** |  | 2025-12-10 | 2026-02-08 |  |  |  |  |  |  |  |  |  |  |  |
|  | 1 | **Method Statements Submittal** |  | 2025-12-10 | 2026-02-07 |  |  |  |  |  |  |  |  |  |  |  |
| CON-LEG101-EN-1810 |  | Preparation & Submission of Method Statement for Earth Works | 14d | 2025-12-10 A | 2025-12-10 A | CON-LEG101-MB-1340 | 100% | 2025-11-26 | 2025-12-11 | Engineer & Technician [122 h] | MKH2-02-002-EN-1740 | 0 | 0 | D1640 | 1 | Method |
| CON-LEG101-EN-1820 |  | Preparation & Submission of Method Statement for Concrete Works | 14d | 2025-12-20 A | 2025-12-20 A | CON-LEG101-MB-1340, CON-LEG101-EN-1810 SS+3d | 100% | 2025-12-20 | 2026-01-04 | Engineer & Technician [122 h] | MKH2-02-002-EN-1760 | 0 | 0 | D1650 | 1 | Method |
| CON-LEG101-EN-1960 |  | Preparation & Submission of Method Statement for Fence and Gates | 14d | 2025-12-20 A | 2026-01-19 A | CON-LEG101-MB-1340, CON-LEG101-MS-1090 SS, CON-LEG101-EN-1820 | 100% | 2026-01-21 | 2026-02-05 | Engineer & Technician [122 h] |  |  |  |  | 1 | Method |
| CON-LEG101-EN-1830 |  | Preparation & Submission of Method Statement for Waterproofing Works | 14d | 2025-12-23 A | 2025-12-23 A | CON-LEG101-MB-1340, CON-LEG101-EN-1820 SS+3d | 100% | 2025-12-23 | 2026-01-07 | Engineer & Technician [122 h] | MKH2-02-002-EN-1770 | 0 | 0 | D1660 | 1 | Method |
| CON-LEG101-EN-1840 |  | Preparation & Submission of Method Statement for Asphalt | 14d | 2025-12-23 A | 2025-12-23 A | CON-LEG101-MB-1340, CON-LEG101-EN-1830 | 100% | 2026-01-08 | 2026-01-24 | Engineer & Technician [122 h] | MKH2-02-002-EN-1870 | 0 | 0 | D1710 | 1 | Method |
| CON-LEG101-EN-1860 |  | Preparation & Submission of Method Statement for Storm Network | 14d | 2025-12-27 A | 2025-12-27 A | CON-LEG101-MB-1340, CON-LEG101-MS-1090 SS, CON-LEG101-EN-1820 SS | 100% | 2025-12-27 | 2026-01-11 | Engineer & Technician [122 h] |  |  |  |  | 1 | Method |
| CON-LEG101-EN-1870 |  | Preparation & Submission of Method Statement for Sewer Network | 14d | 2025-12-28 A | 2025-12-28 A | CON-LEG101-MB-1340, CON-LEG101-MS-1090 SS, CON-LEG101-EN-1860 SS | 100% | 2025-12-28 | 2026-01-12 | Engineer & Technician [122 h] |  |  |  |  | 1 | Method |
| CON-LEG101-EN-1880 |  | Preparation & Submission of Method Statement for Potable Water Network | 14d | 2025-12-28 A | 2025-12-28 A | CON-LEG101-MB-1340, CON-LEG101-MS-1090 SS, CON-LEG101-EN-1870 SS+3d | 100% | 2025-12-31 | 2026-01-15 | Engineer & Technician [122 h] |  |  |  |  | 1 | Method |
| CON-LEG101-EN-1950 |  | Preparation & Submission of Method Statement for Bridge Slabs | 14d | 2025-12-29 A | 2025-12-29 A | CON-LEG101-MB-1340, CON-LEG101-MS-1090 SS, CON-LEG101-EN-1940 SS+3d | 100% | 2026-01-07 | 2026-01-22 | Engineer & Technician [122 h] |  |  |  |  | 1 | Method |
| CON-LEG101-EN-1940 |  | Preparation & Submission of Method Statement for Girders & Post Tension | 14d | 2025-12-30 A | 2025-12-30 A | CON-LEG101-MB-1340, CON-LEG101-MS-1090 SS, CON-LEG101-EN-1930 SS+3d | 100% | 2026-01-04 | 2026-01-19 | Engineer & Technician [122 h] |  |  |  |  | 1 | Method |
| CON-LEG101-EN-1930 |  | Preparation & Submission of Method Statement for Piles of Bridge | 14d | 2026-01-03 A | 2026-01-03 A | CON-LEG101-MB-1340, CON-LEG101-MS-1090 SS, CON-LEG101-EN-1820 SS+7d | 100% | 2026-01-04 | 2026-01-19 | Engineer & Technician [122 h] |  |  |  |  | 1 | Method |
| CON-LEG101-EN-1850 |  | Preparation & Submission of Method Statement for Paving | 14d | 2026-01-04 A | 2026-01-04 A | CON-LEG101-MS-1090 SS, CON-LEG101-MB-1340, CON-LEG101-EN-1840 SS+7d | 100% | 2026-01-04 | 2026-01-19 | Engineer & Technician [122 h] |  |  |  |  | 1 | Method |
| CON-LEG101-EN-1900 |  | Preparation & Submission of Method Statement for Electrical System | 14d | 2026-01-08 A | 2026-01-25 A | CON-LEG101-MB-1340, CON-LEG101-MS-1090 SS, CON-LEG101-EN-1890 SS+3d | 100% | 2026-01-13 | 2026-01-28 | Engineer & Technician [122 h] |  |  |  |  | 1 | Method |
| CON-LEG101-EN-1890 |  | Preparation & Submission of Method Statement for TSE Network | 14d | 2026-01-14 A | 2026-01-14 A | CON-LEG101-MB-1340, CON-LEG101-MS-1090 SS, CON-LEG101-EN-1880 SS+3d | 100% | 2026-01-15 | 2026-01-31 | Engineer & Technician [122 h] |  |  |  |  | 1 | Method |
| CON-LEG101-EN-1920 |  | Preparation & Submission of Method Statement for Telecome System | 14d | 2026-01-15 A | 2026-01-15 A | CON-LEG101-MB-1340, CON-LEG101-MS-1090 SS, CON-LEG101-EN-1910 SS | 100% | 2026-01-19 | 2026-02-03 | Engineer & Technician [122 h] |  |  |  |  | 1 | Method |
| CON-LEG101-EN-1910 |  | Preparation & Submission of Method Statement for Low Current System & CCTV | 14d | 2026-02-07 A | 2026-02-07 A | CON-LEG101-MB-1340, CON-LEG101-MS-1090 SS, CON-LEG101-EN-1900 SS+3d | 100% | 2026-02-08 | 2026-02-24 | Engineer & Technician [122 h] |  |  |  |  | 1 | Method |
|  | 2 | **Method Statements Approval** |  | 2025-12-20 | 2026-02-08 |  |  |  |  |  |  |  |  |  |  |  |
| CON-LEG101-EN-3440 |  | Approval of Method Statement for Earth Works | 6d | 2025-12-20 A | 2025-12-20 A | CON-LEG101-EN-1810 | 100% | 2025-12-23 | 2025-12-29 | Engineer & Technician [122 h] | MKH2-02-002-EN-1740 | 0 | 0 | D4530 | 1 | Method |
| CON-LEG101-EN-3460 |  | Approval of Method Statement for Waterproofing Works | 6d | 2025-12-27 A | 2025-12-27 A | CON-LEG101-EN-1830, CON-LEG101-EN-3450, CON-LEG101-EN-3510 | 100% | 2026-01-26 | 2026-02-01 | Engineer & Technician [122 h] | MKH2-02-002-EN-1770 | 0 | 0 | D4550 | 1 | Method |
| CON-LEG101-EN-3450 |  | Approval of Method Statement for Concrete Works | 6d | 2025-12-28 A | 2026-01-04 A | CON-LEG101-EN-1820, CON-LEG101-EN-3440 | 100% | 2026-01-31 | 2026-02-05 | Engineer & Technician [122 h] | MKH2-02-002-EN-1760 | 0 | 0 | D4540 | 1 | Method |
| CON-LEG101-EN-3490 |  | Approval of Method Statement for Storm Network | 6d | 2026-01-04 A | 2026-01-11 A | CON-LEG101-EN-1860, CON-LEG101-EN-3460 | 100% | 2026-01-24 | 2026-01-29 | Engineer & Technician [122 h] |  |  |  |  | 1 | Method |
| CON-LEG101-EN-3560 |  | Approval of Method Statement for Piles of Bridge | 6d | 2026-01-04 A | 2026-01-04 A | CON-LEG101-EN-1930 | 100% | 2026-01-31 | 2026-02-05 | Engineer & Technician [122 h] |  |  |  |  | 1 | Method |
| CON-LEG101-EN-3570 |  | Approval of Method Statement for Girders & Post Tension | 6d | 2026-01-04 A | 2026-01-04 A | CON-LEG101-EN-1940 | 100% | 2026-01-31 | 2026-02-05 | Engineer & Technician [122 h] |  |  |  |  | 1 | Method |
| CON-LEG101-EN-3580 |  | Approval of Method Statement for Bridge Slabs | 6d | 2026-01-04 A | 2026-01-04 A | CON-LEG101-EN-1950 | 100% | 2026-01-31 | 2026-02-05 | Engineer & Technician [122 h] |  |  |  |  | 1 | Method |
| CON-LEG101-EN-3470 |  | Approval of Method Statement for Asphalt | 6d | 2026-01-11 A | 2026-01-11 A | CON-LEG101-EN-1840 | 100% | 2026-01-14 | 2026-01-20 | Engineer & Technician [122 h] | MKH2-02-002-EN-1870 | 0 | 0 | D4600 | 1 | Method |
| CON-LEG101-EN-3530 |  | Approval of Method Statement for Electrical System | 6d | 2026-01-11 A | 2026-01-11 A | CON-LEG101-EN-1900 | 100% | 2026-01-27 | 2026-02-02 | Engineer & Technician [122 h] |  |  |  |  | 1 | Method |
| CON-LEG101-EN-3480 |  | Approval of Method Statement for Paving | 6d | 2026-01-13 A | 2026-01-13 A | CON-LEG101-EN-1850 | 100% | 2026-01-14 | 2026-01-20 | Engineer & Technician [122 h] |  |  |  |  | 1 | Method |
| CON-LEG101-EN-3500 |  | Approval of Method Statement for Sewer Network | 6d | 2026-01-14 A | 2026-01-17 A | CON-LEG101-EN-1870 | 100% | 2026-01-31 | 2026-02-05 | Engineer & Technician [122 h] |  |  |  |  | 1 | Method |
| CON-LEG101-EN-3520 |  | Approval of Method Statement for TSE Network | 6d | 2026-01-17 A | 2026-01-17 A | CON-LEG101-EN-1890, CON-LEG101-EN-3460 | 100% | 2026-01-31 | 2026-02-05 | Engineer & Technician [122 h] |  |  |  |  | 1 | Method |
| CON-LEG101-EN-3550 |  | Approval of Method Statement for Telecome System | 6d | 2026-01-17 A | 2026-01-17 A | CON-LEG101-EN-1920 | 100% | 2026-01-18 | 2026-01-24 | Engineer & Technician [122 h] |  |  |  |  | 1 | Method |
| CON-LEG101-EN-3510 |  | Approval of Method Statement for Potable Water Network | 6d | 2026-01-27 A | 2026-01-27 A | CON-LEG101-EN-1880, CON-LEG101-EN-3500 | 100% | 2026-02-04 | 2026-02-10 | Engineer & Technician [122 h] |  |  |  |  | 1 | Method |
| CON-LEG101-EN-3590 |  | Approval of Method Statement for Fence and Gates | 6d | 2026-02-05 A | 2026-02-05 A | CON-LEG101-EN-1960 | 100% | 2026-02-07 | 2026-02-12 | Engineer & Technician [122 h] |  |  |  |  | 1 | Method |
| CON-LEG101-EN-3540 |  | Approval of Method Statement for Low Current System & CCTV | 6d | 2026-02-08 A | 2026-02-08 A | CON-LEG101-EN-1910 | 100% | 2026-02-25 | 2026-03-03 | Engineer & Technician [122 h] |  |  |  |  | 1 | Method |

| ID | WBS | Activity | Duration | Start | Finish | Predecessors | Complete | Planned start | Planned finish | Resources | Cost | Actual cost | USERTEXT | Weight 1 | Total Weight % | Mapping Sheet Activity ID | % A | JEDDAH 1 - Area Name |
| --- | --- | --- | --- | --- | --- | --- | --- | --- | --- | --- | --- | --- | --- | --- | --- | --- | --- | --- |
|  | 4 | **Pre-qualification and Material** |  | 2025-12-01 | 2026-11-09 |  |  |  |  |  |  |  |  |  |  |  |  |  |
|  | 1 | **Road Works - Civil** |  | 2025-12-01 | 2026-01-24 |  |  |  |  |  |  |  |  |  |  |  |  |  |
|  | 1 | **Steel Reinforcement** |  | 2025-12-08 | 2025-12-14 |  |  |  |  |  |  |  |  |  |  |  |  |  |
| CON-LEG101-SB-4260 |  | Pre-qualification and Material Submittal for Steel Reinforcement | 5d | 2025-12-08 A | 2025-12-08 A | CON-LEG101-TP-1330, CON-LEG101-MS-1090 SS, CON-LEG101-MB-1000 SS | 100% | 2025-12-15 | 2025-12-20 | Skilled Labor [122 h] |  |  | MKH2-02-002-SB-1140 | 0 | 0 | D6898 | 1 | Materia |
| CON-LEG101-SB-4270 |  | Pre-qualification and Material Approval for Steel Reinforcement | 6d | 2025-12-09 A | 2025-12-14 A | CON-LEG101-SB-4260 | 100% | 2025-12-21 | 2025-12-27 | Removal of chain link fence [64.65]; Skilled Labor [122 h] | 2,262.75 | 2,262.75 | MKH2-02-002-SB-1150 | 0 | 0 | D6908 | 1 | Materia |
|  | 2 | **Ready Mixed Concrete** |  | 2025-12-01 | 2026-01-01 |  |  |  |  |  |  |  |  |  |  |  |  |  |
| CON-LEG101-SB-4280 |  | Pre-qualification and Material Submittal for Ready Mixed Concrete | 3d | 2025-12-01 A | 2025-12-16 A | CON-LEG101-SB-4260 | 100% | 2025-12-21 | 2025-12-23 | Skilled Labor [122 h] |  |  | MKH2-02-002-SB-1140 | 0 | 0 | D6918 | 1 | Materia |
| CON-LEG101-SB-4290 |  | Pre-qualification and Material Approval for Ready Mixed Concrete | 6d | 2026-01-01 A | 2026-01-01 A | CON-LEG101-SB-4280 | 100% | 2026-01-15 | 2026-01-21 | Removal of concrete fence [60.9]; Removal of Electricity distribution panel [0.03]; Demolition of existing structures [75]; Skilled Labor [122 h] | 10,272 | 10,272 | MKH2-02-002-SB-1150 | 0 | 0 | D6928 | 1 | Materia |
|  | 3 | **Water Proofing** |  | 2025-12-16 | 2026-01-24 |  |  |  |  |  |  |  |  |  |  |  |  |  |
| CON-LEG101-SB-4300 |  | Pre-qualification and Material Submittal for Water Proofing | 5d | 2025-12-16 A | 2026-01-06 A | CON-LEG101-SB-4280 | 100% | 2025-12-24 | 2025-12-29 | Skilled Labor [122 h] |  |  | MKH2-02-002-SB-1140 | 0 | 0 | D6938 | 1 | Materia |
| CON-LEG101-SB-4310 |  | Pre-qualification and Material Approval for Water Proofing | 6d | 2025-12-21 A | 2026-01-24 A | CON-LEG101-SB-4300 | 100% | 2026-01-04 | 2026-01-11 | Skilled Labor [122 h] |  |  | MKH2-02-002-SB-1150 | 0 | 0 | D6948 | 1 | Materia |
|  | 4 | **Aggregate Base Course** |  | 2025-12-01 | 2026-01-13 |  |  |  |  |  |  |  |  |  |  |  |  |  |
| CON-LEG101-SB-1020 |  | Pre-qualification and Material Submittal for Aggregate Base Cource | 5d | 2025-12-01 A | 2026-01-13 A | CON-LEG101-SB-4300 SS | 100% | 2025-12-24 | 2025-12-29 | Skilled Labor [122 h] |  |  | MKH2-02-002-SB-1140 | 0 | 0 | D2020 | 1 | Materia |
| CON-LEG101-SB-1030 |  | Pre-qualification and Material Approval for Aggregate Base Cource | 6d | 2025-12-02 A | 2026-01-13 A | CON-LEG101-SB-1020 | 100% | 2025-12-30 | 2026-01-05 | Excavation for Roadway, fences and bridge, cuttings including dump locations (all types of soil) [4411.81]; Parcrels Excavation for cuttings (all types of soil) [3706.7]; Embankments to the roads , fences and bridge. [3072.9]; Embankments to the parcels [2839.35]; Subgrade [1119.16]; Skilled Labor [122 h]; Aggregate base course [716.12 M3] | 272,384.84 | 272,384.84 | MKH2-02-002-SB-1150 | 0 | 0 | D2030 | 1 | Materia |
|  | 5 | **Bituminous Base & Wearing Course** |  | 2025-12-01 | 2026-01-13 |  |  |  |  |  |  |  |  |  |  |  |  |  |
| CON-LEG101-SB-1060 |  | Pre-qualification and Material Submittal for Bituminous Base & Wearing Cource | 5d | 2025-12-01 A | 2026-01-13 A | CON-LEG101-SB-1020 | 100% | 2025-12-30 | 2026-01-04 | Skilled Labor [122 h] |  |  | MKH2-02-002-SB-1180 | 0 | 0 | D2060 | 1 | Materia |
| CON-LEG101-SB-1070 |  | Pre-qualification and Material Approval for Bituminous Base & Wearing Cource | 6d | 2025-12-02 A | 2026-01-13 A | CON-LEG101-SB-1060 | 100% | 2026-01-05 | 2026-01-11 | Bituminous base course (Grading I - Class A), including Prime Coat (MC1) according to drawings [248.7]; Bituminous concrete wearing course, (Grading I - Class A), including tack coat (RC2) according to drawings. [177.6]; Skilled Labor [122 h] | 250,806 | 250,806 | MKH2-02-002-SB-1190 | 0 | 0 | D2070 | 1 | Materia |
|  | 7 | **Precast Concrete Kerb** |  | 2025-12-16 | 2026-01-24 |  |  |  |  |  |  |  |  |  |  |  |  |  |
| CON-LEG101-SB-1100 |  | Pre-qualification and Material Submittal for Precast Concrete Kerb | 5d | 2025-12-16 A | 2026-01-17 A | CON-LEG101-SB-1060 SS | 100% | 2025-12-30 | 2026-01-04 | Skilled Labor [122 h] |  |  | MKH2-02-002-SB-1260 | 0 | 0 | D2140 | 1 | Materia |
| CON-LEG101-SB-1110 |  | Pre-qualification and Material Approval for Precast Concrete Kerb | 6d | 2025-12-18 A | 2026-01-24 A | CON-LEG101-SB-1100 | 100% | 2025-12-28 | 2026-01-03 | Precast Concrete Kerb, Type K1-A [603.6]; Precast Concrete Kerb, Type K4 [473.85]; Precast Concrete Kerb, Type K1-B [248.4]; Precast Concrete Kerb, Type K NEW (Flushed Kerb) [473.85]; Skilled Labor [122 h] | 101,523 | 101,523 | MKH2-02-002-SB-1270 | 0 | 0 | D2150 | 1 | Materia |
|  | 8 | **Interlocking Block Pavers** |  | 2025-12-16 | 2026-01-24 |  |  |  |  |  |  |  |  |  |  |  |  |  |
| CON-LEG101-SB-1140 |  | Pre-qualification and Material Submittal for Interlocking Block Pavers | 5d | 2025-12-16 A | 2026-01-17 A | CON-LEG101-SB-1100 SS | 100% | 2025-12-30 | 2026-01-04 | Skilled Labor [122 h] |  |  | MKH2-02-002-SB-1300 | 0 | 0 | D2180 | 1 | Materia |
| CON-LEG101-SB-1150 |  | Pre-qualification and Material Approval for Interlocking Block Pavers | 6d | 2025-12-18 A | 2026-01-24 A | CON-LEG101-SB-1140 | 100% | 2025-12-28 | 2026-01-03 | Interlocking block pavers for sidewalk/footpath [1158.6]; Interlocking block pavers for roads/on-street parking [578.55]; Skilled Labor [122 h] | 127,386 | 127,386 | MKH2-02-002-SB-1310 | 0 | 0 | D2190 | 1 | Materia |
|  | 9 | **Pavement Markings** |  | 2026-01-07 | 2026-01-18 |  |  |  |  |  |  |  |  |  |  |  |  |  |
| CON-LEG101-SB-1180 |  | Pre-qualification and Material Submittal for Pavement Markings | 5d | 2026-01-07 A | 2026-01-18 A | CON-LEG101-SB-1140 SS | 100% | 2026-01-13 | 2026-01-19 | Skilled Labor [122 h] |  |  | MKH2-02-002-SB-1340 | 0 | 0 | D2220 | 1 | Materia |
| CON-LEG101-SB-1190 |  | Pre-qualification and Material Approval for Pavement Markings | 6d | 2026-01-13 A | 2026-01-18 A | CON-LEG101-SB-1180 | 100% | 2026-01-24 | 2026-01-29 | Retroreflective Plastic Cones [0.54]; Retroreflective Thermoplastic white paint [87]; Retroreflective Thermoplastic yellow paint including Rumble strips [26.4]; Skilled Labor [122 h] | 5,373 | 5,373 | MKH2-02-002-SB-1350 | 0 | 0 | D2230 | 1 | Materia |

| ID | WBS | Activity | Duration | Start | Finish | Predecessors | Complete | Planned start | Planned finish | Resources | Cost | Actual cost | USERTEXT | Weight 1 | Total Weight % | Mapping Sheet Activity ID | % A | JEDDAH 1 - Area Name |
| --- | --- | --- | --- | --- | --- | --- | --- | --- | --- | --- | --- | --- | --- | --- | --- | --- | --- | --- |
|  | 11 | **Handicap ramp** |  | 2026-01-07 | 2026-01-18 |  |  |  |  |  |  |  |  |  |  |  |  |  |
| CON-LEG101-SB-2130 |  | Pre-qualification and Material Submittal for Handicap ramp | 5d | 2026-01-07 A | 2026-01-17 A | CON-LEG101-SB-1180 SS | 100% | 2026-01-13 | 2026-01-19 | Skilled Labor [122 h] |  |  | MKH2-02-002-SB-1380 | 0 | 0 | D3570 | 1 | Materia |
| CON-LEG101-SB-2370 |  | Pre-qualification and Material Approval for Handicap ramp | 6d | 2026-01-18 A | 2026-01-18 A | CON-LEG101-SB-2130 | 100% | 2026-01-27 | 2026-02-03 | Handicap ramp [3.48]; Skilled Labor [122 h] | 5,220 | 5,220 | MKH2-02-002-SB-1340 | 0 | 0 | D4705 | 1 | Materia |
|  | 10 | **Traffic Signs** |  | 2026-01-14 | 2026-01-24 |  |  |  |  |  |  |  |  |  |  |  |  |  |
| CON-LEG101-SB-1220 |  | Pre-qualification and Material Submittal for Traffic Signs | 5d | 2026-01-14 A | 2026-01-21 A | CON-LEG101-SB-1060 SS | 100% | 2026-01-19 | 2026-01-25 | Skilled Labor [122 h] |  |  | MKH2-02-002-SB-1380 | 0 | 0 | D2260 | 1 | Materia |
| CON-LEG101-SB-1230 |  | Pre-qualification and Material Approval for Traffic Signs | 6d | 2026-01-24 A | 2026-01-24 A | CON-LEG101-SB-1220 | 100% | 2026-01-27 | 2026-02-03 | Traffic signs, ground mounted, Sheet Aluminum, (breakaway)Single post, with all accessories [4.98]; Traffic signs, ground mounted, Sheet Aluminum, (breakaway) Double post with all accessories [2.73]; Traffic signs, ground mounted, Sheet Alumenium, (breakaway) One road sign assembly mounted on two tubular post with all accessories [0.12]; Skilled Labor [122 h] | 20,589 | 20,589 | MKH2-02-002-SB-1390 | 0 | 0 | D2270 | 1 | Materia |
|  | 7 | **Stormwater Utilities** |  | 2025-12-11 | 2026-01-28 |  |  |  |  |  |  |  |  |  |  |  |  |  |
|  | 2 | **GRP Pipes** |  | 2025-12-11 | 2025-12-21 |  |  |  |  |  |  |  |  |  |  |  |  |  |
| CON-LEG101-SB-1580 |  | Pre-qualification and Material Submittal for GRP Pipe | 7d | 2025-12-11 A | 2025-12-11 A | CON-LEG101-MS-1090 SS, CON-LEG101-PS-1110 SS+3d | 100% | 2025-12-16 | 2025-12-23 | Skilled Labor [122 h] |  |  | MKH2-02-002-SB-1820 | 0 | 0 | D2660 | 1 | Materia |
| CON-LEG101-SB-1590 |  | Pre-qualification and Material Approval for GRP Pipe | 6d | 2025-12-11 A | 2025-12-21 A | CON-LEG101-SB-1580 | 100% | 2025-12-24 | 2025-12-30 | Skilled Labor [122 h]; Stormwater Utilities - GRP Pipes - 400 mm Diameter Depth: 0.00 m - 1.50 m. [0.6]; Stormwater Utilities - GRP Pipes - 400 mm Depth: 1.51m - 2.50m [12.6]; Stormwater Utilities - GRP Pipes - 400 mm Depth exceeds 2.50m [0.6]; Stormwater Utilities - GRP Pipes - 500 mm Depth: 0.00 m - 1.50 m. [0.6]; Stormwater Utilities - GRP Pipes - 500 mm Depth: 1.51m - 2.50m [82.65]; Stormwater Utilities - GRP Pipes - 500 mm Depth: 2.51m - 3.50m [34.5]; Stormwater Utilities - GRP Pipes - 500 mm Depth: 3.51m - 4.50m [5.49]; Stormwater Utilities - GRP Pipes - 500 mm Depth exceeds 4.50m [0.6]; Stormwater Utilities - GRP Pipes - 600 mm Depth: 1.51m - 2.50m [1.89]; Stormwater Utilities - GRP Pipes - 600 mm Depth: 2.51m - 3.50m [17.52]; Stormwater Utilities - GRP Pipes - 600 mm Depth: 3.51m - 4.50m [9.33]; Stormwater Utilities - GRP Pipes - 600 mm Depth exceeds 4.50m [0.6]; Stormwater Utilities - GRP Pipes - 700 mm Depth: 1.51m - 2.50m [0.6]; Stormwater Utilities - GRP Pipes - 700 mm Depth: 2.51m - 3.50m [2.16]; Stormwater Utilities - GRP Pipes - 700 mm Depth exceeds 3.50m [0.6]; Stormwater Utilities - GRP Pipes - 800 mm Depth: 1.51m - 2.50m [1.29]; Stormwater Utilities - GRP Pipes - 800 mm Depth: 2.51m - 3.50m [5.94]; Stormwater Utilities - GRP Pipes - 800 mm Depth exceeds 3.50m [0.6] | 141,529.5 | 141,529.5 | MKH2-02-002-SB-1830 | 0 | 0 | D2670 | 1 | Materia |
|  | 4 | **Inlet Manholes** |  | 2025-12-11 | 2025-12-22 |  |  |  |  |  |  |  |  |  |  |  |  |  |
| CON-LEG101-SB-3320 |  | Pre-qualification and Material Submittal for Inlet Manholes | 4d | 2025-12-11 A | 2025-12-21 A | CON-LEG101-SB-1580 | 100% | 2025-12-24 | 2025-12-28 | Skilled Labor [122 h] |  |  | MKH2-02-002-SB-1820 | 0 | 0 | D5868 | 1 | Materia |
| CON-LEG101-SB-3330 |  | Pre-qualification and Material Approval for Inlet Manholes | 6d | 2025-12-11 A | 2025-12-22 A | CON-LEG101-SB-3320 | 100% | 2025-12-29 | 2026-01-04 | Stormwater Utilities - (ring 1200 mm internal dia.) MH depth 1.51 - 2.50m [2.01]; Stormwater Utilities - (ring 1200 mm internal dia.) MH depth 2.51 - 3.50m [1.02]; Stormwater Utilities - (ring 1200 mm internal dia.) MH depth 3.51 - 4.50m [0.57]; Stormwater Utilities - (ring 1200 mm internal dia.) MH depth exceeds 4.50m [0.03]; Stormwater Utilities - (ring 1500 mm internal dia.) MH depth exceeds 3.50m [0.03]; Skilled Labor [122 h]; Stormwater Utilities - (ring 1500 mm internal dia.) MH depth 1.51 - 2.50m [0.06]; Stormwater Utilities - (ring 1500 mm internal dia.) MH depth 2.51 - 3.50m [0.18] | 73,365 | 73,365 | MKH2-02-002-SB-1990 | 0 | 0 | D5870 | 1 | Materia |
|  | 1 | **UPVC Pipes** |  | 2025-12-11 | 2026-01-28 |  |  |  |  |  |  |  |  |  |  |  |  |  |
| CON-LEG101-SB-1540 |  | Pre-qualification and Material Submittal for UPVC Pipes | 6d | 2025-12-11 A | 2026-01-11 A | CON-LEG101-MS-1090, CON-LEG101-SB-1580 SS | 100% | 2025-12-16 | 2025-12-22 | Skilled Labor [122 h] |  |  | MKH2-02-002-SB-1780 | 0 | 0 | D2620 | 1 | Materia |
| CON-LEG101-SB-1550 |  | Pre-qualification and Material Approval for UPVC Pipes | 6d | 2025-12-11 A | 2026-01-28 A | CON-LEG101-SB-1540 | 100% | 2025-12-23 | 2025-12-29 | Skilled Labor [122 h]; Stormwater Utilities - PVC Pipes - 300 mm Diameter Depth: 0.00 m - 1.50 m. [31.35]; Stormwater Utilities - PVC Pipes - 300 mm Diameter Depth: 1.51m - 2.50m [45.93]; Stormwater Utilities - PVC Pipes - 300 mm Diameter Depth exceeds 2.50m [0.6]; Stormwater Utilities - PVC Pipes - 400 mm Diameter Depth: 0.00 m - 1.50 m. [0.15]; Stormwater Utilities - PVC Pipes - 500 mm Depth: 0.00 m - 1.50 m. [0.6]; Stormwater Utilities - PVC Pipes - 400 mm Diameter Depth: 1.51m - 2.50m [0.24]; Stormwater Utilities - PVC Pipes - 400 mm Diameter Depth exceeds 2.50m [0.15]; Stormwater Utilities - PVC Pipes - 500 mm Depth: 1.51m - 2.50m [14.19]; Stormwater Utilities - PVC Pipes - 500 mm Depth exceeds 2.50m [0.6] | 45,585.3 | 45,585.3 | MKH2-02-002-SB-1790 | 0 | 0 | D2630 | 1 | Materia |
|  | 6 | **Concrete chambers** |  | 2025-12-11 | 2025-12-22 |  |  |  |  |  |  |  |  |  |  |  |  |  |
| CON-LEG101-SB-1620 |  | Pre-qualification and Material Submittal for Concrete chambers | 7d | 2025-12-11 A | 2025-12-21 A | CON-LEG101-SB-1540, CON-LEG101-SB-3320 | 100% | 2025-12-29 | 2026-01-05 | Skilled Labor [122 h] |  |  | MKH2-02-002-SB-1980 | 0 | 0 | D2700 | 1 | Materia |
| CON-LEG101-SB-1630 |  | Pre-qualification and Material Approval for Concrete chambers | 6d | 2025-12-11 A | 2025-12-22 A | CON-LEG101-SB-1620 | 100% | 2026-01-06 | 2026-01-12 | Single Catch basin as per drawings [2.97]; Double Catch basin as per drawings [0.6]; Curb inlet catch basin [1.83]; Outfall structure as per drawings [0.03]; Skilled Labor [122 h] | 51,990 | 51,990 | MKH2-02-002-SB-1990 | 0 | 0 | D2710 | 1 | Materia |
|  | 6 | **Sanitary Sewerage** |  | 2025-12-11 | 2025-12-28 |  |  |  |  |  |  |  |  |  |  |  |  |  |
|  | 1 | **GRP Pipes** |  | 2025-12-11 | 2025-12-21 |  |  |  |  |  |  |  |  |  |  |  |  |  |
| CON-LEG101-SB-1460 |  | Pre-qualification and Material Submittal for GRP Pipe | 7d | 2025-12-11 A | 2025-12-13 A | CON-LEG101-SB-1580 SS | 100% | 2025-12-16 | 2025-12-23 | Skilled Labor [122 h] |  |  | MKH2-02-002-SB-1700 | 0 | 0 | D2540 | 1 | Materia |
| CON-LEG101-SB-1470 |  | Pre-qualification and Material Approval for GRP Pipe | 6d | 2025-12-11 A | 2025-12-21 A | CON-LEG101-SB-1460 | 100% | 2025-12-24 | 2025-12-30 | Sanitary Sewerage 450mm Depth: 3.51m - 4.50m [2.4]; Sanitary Sewerage 450mm Depth exceeds 4.50m [0.6]; Sanitary Sewerage - Concrete encasement pipe dia 200 mm [30.12]; Sanitary Sewerage Concrete encasement pipe dia 350 mm [0.75]; Skilled Labor [122 h]; Sanitary Sewerage 150mm Diameter Depth: 0.00 m - 1.50 m. [0.6]; Sanitary Sewerage 150mm Diameter Depth: 1.51m - 2.50m [6]; Sanitary Sewerage 150mm Diameter Depth exceeds 2.50m [0.6]; Sanitary Sewerage 200mm Depth: 0.00 m - 1.50 m. [38.73]; Sanitary Sewerage 200mm Depth: 1.51m - 2.50m [65.58]; Sanitary Sewerage 200mm Depth: 2.51m - 3.50m [32.64]; Sanitary Sewerage 200mm Depth exceeds 3.50m [0.6]; Sanitary Sewerage 300mm Depth: 0.00 m - 1.50 m. [0.6]; Sanitary Sewerage 300mm Depth: 1.51m - 2.50m [7.02]; Sanitary Sewerage 300mm Depth: 2.51m - 3.50m [7.32]; Sanitary Sewerage 300mm Depth exceeds 3.50m [0.6]; Sanitary Sewerage 350mm Depth: 0.00 m - 1.50 m. [0.6]; Sanitary Sewerage 350mm Depth: 1.51m - 2.50m [6.81]; Sanitary Sewerage 350mm Depth: 2.51m - 3.50m [2.67]; Sanitary Sewerage 350mm Depth exceeds 3.50m [0.6]; Sanitary Sewerage 450mm Depth: 0.00 m - 1.50 m. [0.6]; Sanitary Sewerage 450mm Depth: 1.51m - 2.50m [14.4]; Sanitary Sewerage 450mm Depth: 2.51m - 3.50m [13.14] | 105,885 | 105,885 | MKH2-02-002-SB-1710 | 0 | 0 | D2550 | 1 | Materia |
|  | 2 | **Fiberglass Manholes** |  | 2025-12-11 | 2025-12-28 |  |  |  |  |  |  |  |  |  |  |  |  |  |
| CON-LEG101-SB-1500 |  | Pre-qualification and Material Submittal for Fiberglass Manholes | 7d | 2025-12-11 A | 2025-12-27 A | CON-LEG101-SB-1460 | 100% | 2025-12-24 | 2025-12-31 | Skilled Labor [122 h] |  |  | MKH2-02-002-SB-1740 | 0 | 0 | D2580 | 1 | Materia |
| CON-LEG101-SB-1510 |  | Pre-qualification and Material Approval for Fiberglass Manholes | 6d | 2025-12-11 A | 2025-12-28 A | CON-LEG101-SB-1500 | 100% | 2026-01-01 | 2026-01-07 | Sanitary Sewerage MH depth 0.00 m - 1.50 m. [0.9]; Sanitary Sewerage MH depth 1.51 - 2.50 m [1.35]; Sanitary Sewerage MH depth 1.51 - 2.50 m with back drop [0.12]; Sanitary Sewerage MH depth 2.51 - 3.50 m [1.11]; Sanitary Sewerage MH depth 2.51 - 3.50 m with back drop [0.03]; Sanitary Sewerage MH depth 3.51 - 4.50 m [0.09]; Sanitary Sewerage MH depth exceeds 3.50 m with back drop [0.03]; Sanitary Sewerage MH depth exceeds 4.50 m [0.03]; Skilled Labor [122 h] | 64,680 | 64,680 | MKH2-02-002-SB-1750 | 0 | 0 | D2590 | 1 | Materia |

| ID | WBS | Activity | Duration | Start | Finish | Predecessors | Complete | Planned start | Planned finish | Resources | Cost | Actual cost | USERTEXT | Weight 1 | Total Weight % | Mapping Sheet Activity ID | % A | JEDDAH 1 - Area Name |
| --- | --- | --- | --- | --- | --- | --- | --- | --- | --- | --- | --- | --- | --- | --- | --- | --- | --- | --- |
|  | 13 | **TSE Network** |  | 2025-12-13 | 2026-01-01 |  |  |  |  |  |  |  |  |  |  |  |  |  |
|  | 1 | **HDPE Pipe (PN 16)** |  | 2025-12-13 | 2025-12-22 |  |  |  |  |  |  |  |  |  |  |  |  |  |
| CON-LEG101-SB-1420 |  | Pre-qualification and Material Submittal for HDPE Pipe (PN 16) | 5d | 2025-12-13 A | 2025-12-22 A | CON-LEG101-SB-1460 | 100% | 2025-12-24 | 2025-12-29 | Skilled Labor [122 h] |  |  | MKH2-02-002-SB-1660 | 0 | 0 | D2500 | 1 | Materia |
| CON-LEG101-SB-1430 |  | Pre-qualification and Material Approval for HDPE Pipe (PN 16) | 6d | 2025-12-14 A | 2025-12-22 A | CON-LEG101-SB-1420 | 100% | 2025-12-30 | 2026-01-05 | Piping TSE Network - 200mm Diameter Depth: 2.51m - 3.50m [1.77]; Piping TSE Network - 200mm Diameter Depth exceeds 3.50m [0.6]; Skilled Labor [122 h]; Piping TSE Network - 110mm Diameter Depth: 0.00 m - 1.50 m. [15.45]; Piping TSE Network - 110mm Diameter Depth: 1.51m - 2.50m [22.71]; Piping TSE Network - 110mm Diameter Depth exceeds 2.50m [0.6]; Piping TSE Network - 160mm Diameter Depth: 0.00 m - 1.50 m. [16.35]; Piping TSE Network - 160mm Diameter Depth: 1.51m - 2.50m [48.48]; Piping TSE Network - 160mm Diameter Depth exceeds 2.50m [0.6]; Piping TSE Network - 200mm Diameter Depth: 0.00 m - 1.50 m. [46.35]; Piping TSE Network - 200mm Diameter Depth: 1.51m - 2.50m [89.34]; Piping TSE Network - 250mm Diameter Depth: 0.00 m - 1.50 m. [0.6]; Piping TSE Network - 250mm Diameter Depth: 1.51m - 2.50m [6.21]; Piping TSE Network - 250mm Diameter Depth exceeds 2.50m [0.6]; Piping TSE Network - 315mm Diameter Depth: 0.00 m - 1.50 m. [19.83]; Piping TSE Network - 315mm Diameter Depth: 1.51m - 2.50m [12.18]; Piping TSE Network - 315mm Diameter Depth: 2.51m - 3.50m [0.45]; Piping TSE Network - Concrete encasement, pipe dia 110 mm [2.04]; Piping TSE Network - 315mm Diameter Depth exceeds 3.50m [0.6] | 94,747.5 | 94,747.5 | MKH2-02-002-SB-1670 | 0 | 0 | D2510 | 1 | Materia |
|  | 2 | **Fire Hydrant** |  | 2025-12-15 | 2026-01-01 |  |  |  |  |  |  |  |  |  |  |  |  |  |
| CON-LEG101-SB-2100 |  | Pre-qualification and Material Submittal for Fire Hydrant | 5d | 2025-12-15 A | 2025-12-29 A | CON-LEG101-SB-1420 | 100% | 2025-12-30 | 2026-01-04 | Skilled Labor [122 h] |  |  | MKH2-02-002-SB-5620 | 0 | 0 | D3500 | 1 | Materia |
| CON-LEG101-SB-2110 |  | Pre-qualification and Material Approval for Fire Hydrant | 6d | 2025-12-17 A | 2026-01-01 A | CON-LEG101-SB-2100 | 100% | 2026-01-06 | 2026-01-13 | Piping TSE Network - 3-outlet fire hydrant (2 x 2.5 inch and 1 x 4.5 inch) in the form of a separate dry vacuum cylinder [2.67]; Skilled Labor [122 h] | 24,030 | 24,030 | MKH2-02-002-SB-5630 | 0 | 0 | D3510 | 1 | Materia |
|  | 3 | **Valves** |  | 2025-12-15 | 2026-01-01 |  |  |  |  |  |  |  |  |  |  |  |  |  |
| CON-LEG101-SB-2060 |  | Pre-qualification and Material Submittal for Valves | 4d | 2025-12-15 A | 2025-12-29 A | CON-LEG101-SB-2100 SS+2d | 100% | 2026-01-01 | 2026-01-05 | Skilled Labor [122 h] |  |  | MKH2-02-002-SB-5580 | 0 | 0 | D3460 | 1 | Materia |
| CON-LEG101-SB-2070 |  | Pre-qualification and Material Approval for Valves | 6d | 2025-12-17 A | 2026-01-01 A | CON-LEG101-SB-2060 | 100% | 2026-01-05 | 2026-01-12 | Piping TSE Network - Gate valves, on pipe with diameter 250 mm [0.03]; Piping TSE Network - Butterfly valves, on pipe with diameter 315 mm [0.12]; Skilled Labor [122 h]; Piping TSE Network - Gate valves, on pipe with diameter 110 mm [2.64]; Piping TSE Network - Gate valves, on pipe with diameter 160 mm [0.27]; Piping TSE Network - Gate valves, on pipe with diameter 200 mm [0.57]; Piping TSE Network - Wash out valve, on pipes with diameter 110-400 mm [0.33]; Piping TSE Network - Air valve complete with gate valves, on pipes with diameter less than 315 mm. [0.3]; Piping TSE Network - On 315-400 mm diameter pipeline [0.12]; Piping TSE Network - Wash out valve chamber; on 110-400 mm diameter pipeline [0.33]; Piping TSE Network - Air valve chamber; on less than 315 mm diameter pipeline [0.3] | 55,605 | 55,605 | MKH2-02-002-SB-5590 | 0 | 0 | D3470 | 1 | Materia |
|  | 5 | **Public Water Utility Distribution** |  | 2025-12-13 | 2026-01-01 |  |  |  |  |  |  |  |  |  |  |  |  |  |
|  | 1 | **HDPE Pipe (PN 16)** |  | 2025-12-13 | 2025-12-22 |  |  |  |  |  |  |  |  |  |  |  |  |  |
| CON-LEG101-SB-1380 |  | Pre-qualification and Material Submittal for HDPE Pipe (PN 16) | 5d | 2025-12-13 A | 2025-12-22 A | CON-LEG101-SB-1420 SS+1d | 100% | 2025-12-25 | 2025-12-30 | Skilled Labor [122 h] |  |  | MKH2-02-002-SB-1580 | 0 | 0 | D2460 | 1 | Materia |
| CON-LEG101-SB-1390 |  | Pre-qualification and Material Approval for HDPE Pipe (PN 16) | 6d | 2025-12-14 A | 2025-12-22 A | CON-LEG101-SB-1380 | 100% | 2025-12-31 | 2026-01-06 | Public Water - 110mm Diameter Depth: 0.00 m - 1.50 m. [64.59]; Public Water - 110mm Diameter Depth: 1.51 m - 2.50 m. [42.15]; Public Water - 110mm Diameter Depth exceeds 2.50m [0.6]; Public Water - 160mm Diameter Depth: 1.51m - 2.50m [23.79]; Public Water - 200mm Diameter Depth: 0.00m -1.50m [64.44]; Public Water - Concrete encasement, pipe dia 110 mm [5.76]; Skilled Labor [122 h]; Public Water - 160mm Diameter Depth: 0.00 m - 1.50 m. [19.2]; Public Water - 160mm Diameter Depth exceeds 2.50m [0.6]; Public Water - 200mm Diameter Depth: 1.51m - 2.50m [28.83]; Public Water - 200mm Diameter Depth exceeds 2.50m [0.6]; Public Water - 400mm Diameter Depth: 0.00m -1.50m [77.43]; Public Water - 400mm Diameter Depth: 1.51m - 2.50m [2.73]; Public Water - 400mm Diameter Depth exceeds 2.50m [0.6] | 110,643.6 | 110,643.6 | MKH2-02-002-SB-1590 | 0 | 0 | D2470 | 1 | Materia |
|  | 4 | **Valves** |  | 2025-12-15 | 2026-01-01 |  |  |  |  |  |  |  |  |  |  |  |  |  |
| CON-LEG101-SB-2020 |  | Pre-qualification and Material Submittal for Valves | 4d | 2025-12-15 A | 2025-12-29 A | CON-LEG101-SB-1380 | 100% | 2025-12-31 | 2026-01-04 | Skilled Labor [122 h] |  |  | MKH2-02-002-SB-5540 | 0 | 0 | D3420 | 1 | Materia |
| CON-LEG101-SB-2030 |  | Pre-qualification and Material Approval for Valves | 6d | 2025-12-17 A | 2026-01-01 A | CON-LEG101-SB-2020 | 100% | 2026-01-05 | 2026-01-12 | Public Water - Gate valves, on pipe with diameter 110 mm [2.25]; Public Water - Gate valves, on pipe with diameter 160 mm [0.3]; Public Water - Gate valves, on pipe with diameter 200 mm [0.21]; Public Water - Butterfly valves, on pipe with diameter 400 mm [0.03]; Public Water - Wash out valve, on pipes with diameter 110-400 mm [0.21]; Public Water - Air valve complete with gate valves, on pipes with diameter less than 315 mm. [0.18]; Public Water - Air valve complete with gate valves, on pipes with diameter from 355 to 630 mm [0.06]; Public Water - On 315-400 mm diameter pipeline [0.03]; Public Water - Wash out valve chamber; on 110-400 mm diameter pipeline [0.21]; Public Water - Air valve chamber; on less than 315 mm diameter pipeline [0.18]; Public Water - Air valve chamber; on pipe from 355 to 630 mm [0.06]; Skilled Labor [122 h] | 37,620 | 37,620 | MKH2-02-002-SB-5550 | 0 | 0 | D3430 | 1 | Materia |
|  | 2 | **Bridge Works** |  | 2025-12-30 | 2026-03-24 |  |  |  |  |  |  |  |  |  |  |  |  |  |
|  | 3 | **Prestressing Strands** |  | 2026-01-06 | 2026-01-31 |  |  |  |  |  |  |  |  |  |  |  |  |  |
| CON-LEG101-SB-3740 |  | Pre-qualification and Material Submittal for Prestressing Strands | 5d | 2026-01-06 A | 2026-01-12 A | CON-LEG101-SB-4300 SS | 100% | 2026-01-10 | 2026-01-14 | Skilled Labor [122 h] |  |  | MKH2-02-002-SB-1700 | 0 | 0 | D6378 | 1 | Materia |
| CON-LEG101-SB-3750 |  | Pre-qualification and Material Approval for Prestressing Strands | 6d | 2026-01-20 A | 2026-01-31 A | CON-LEG101-SB-3740 | 100% | 2026-01-21 | 2026-01-27 | "Lean concrete [0.24]; "Reinforced concrete Piles [4.32]; "Reinforced concrete of Bridge Sub-structure [4.05]; "Reinforced concrete Bridge Superstructure [6.38]; "Reinforced precast prestressed concrete [7.44]; "PRESTRESSING STRANDS [0.6]; "Reinforced Steel Grade 60 [3]; Skilled Labor [122 h] | 71,205 | 71,205 | MKH2-02-002-SB-1750 | 0 | 0 | D6388 | 1 | Materia |
|  | 5 | **Bridge Bearings** |  | 2026-01-06 | 2026-01-31 |  |  |  |  |  |  |  |  |  |  |  |  |  |
| CON-LEG101-SB-3780 |  | Pre-qualification and Material Submittal for Bridge Bearings | 5d | 2026-01-06 A | 2026-01-12 A | CON-LEG101-SB-3740 | 100% | 2026-01-15 | 2026-01-20 | Skilled Labor [122 h] |  |  | MKH2-02-002-SB-1700 | 0 | 0 | D6418 | 1 | Materia |
| CON-LEG101-SB-3790 |  | Pre-qualification and Material Approval for Bridge Bearings | 6d | 2026-01-12 A | 2026-01-31 A | CON-LEG101-SB-3780 | 100% | 2026-01-21 | 2026-01-27 | "BRIDGE BEARINGS [0.36]; Skilled Labor [122 h] | 1,800 | 1,800 | MKH2-02-002-SB-1750 | 0 | 0 | D6428 | 1 | Materia |

| ID | WBS | Activity | Duration | Start | Finish | Predecessors | Complete | Planned start | Planned finish | Resources | Cost | Actual cost | USERTEXT | Weight 1 | Total Weight % | Mapping Sheet Activity ID | % A | JEDDAH 1 - Area Name |
| --- | --- | --- | --- | --- | --- | --- | --- | --- | --- | --- | --- | --- | --- | --- | --- | --- | --- | --- |
|  | 6 | **Expansion Joints** |  | 2026-01-07 | 2026-02-04 |  |  |  |  |  |  |  |  |  |  |  |  |  |
| CON-LEG101-SB-3800 |  | Pre-qualification and Material Submittal for Expansion Joints | 5d | 2026-01-07 A | 2026-01-17 A | CON-LEG101-SB-3780 SS | 100% | 2026-01-15 | 2026-01-20 | Skilled Labor [122 h] |  |  | MKH2-02-002-SB-1700 | 0 | 0 | D6438 | 1 | Materia |
| CON-LEG101-SB-3810 |  | Pre-qualification and Material Approval for Expansion Joints | 6d | 2026-01-22 A | 2026-02-04 A | CON-LEG101-SB-3800 | 100% | 2026-01-31 | 2026-02-05 | Membrane waterproofing for concert in touch with soil and membrane waterproofing for bridge slab (under asphalt ) as per details drawing ST-DWG-6103, including protection board around foundation sides. The cost includes preparation work and cleaning the s [15]; "Protective Coating for Concrete Surfaces [39.06]; "EXPANSION JOINTS [0.62]; Skilled Labor [122 h] | 7,944.2 | 7,944.2 | MKH2-02-002-SB-1750 | 0 | 0 | D6448 | 1 | Materia |
|  | 4 | **New Jersey** |  | 2025-12-30 | 2026-01-01 |  |  |  |  |  |  |  |  |  |  |  |  |  |
| CON-LEG101-SB-3760 |  | Pre-qualification and Material Submittal for New Jersey | 5d | 2025-12-30 A | 2025-12-30 A | CON-LEG101-SB-3800 SS | 100% | 2026-01-15 | 2026-01-20 | Skilled Labor [122 h] |  |  | MKH2-02-002-SB-1700 | 0 | 0 | D6398 | 1 | Materia |
| CON-LEG101-SB-3770 |  | Pre-qualification and Material Approval for New Jersey | 6d | 2026-01-01 A | 2026-01-01 A | CON-LEG101-SB-3760 | 100% | 2026-01-21 | 2026-01-27 | "New Jersey [2.88]; Skilled Labor [122 h] | 1,440 | 1,440 | MKH2-02-002-SB-1750 | 0 | 0 | D6408 | 1 | Materia |
|  | 7 | **Guard Rail** |  | 2026-01-14 | 2026-03-24 |  |  |  |  |  |  |  |  |  |  |  |  |  |
| CON-LEG101-SB-3820 |  | Pre-qualification and Material Submittal for Guard Rail | 5d | 2026-01-14 A | 2026-01-22 A | CON-LEG101-SB-3760 SS | 100% | 2026-01-15 | 2026-01-20 | Skilled Labor [122 h] |  |  | MKH2-02-002-SB-1700 | 0 | 0 | D6458 | 1 | Materia |
| CON-LEG101-SB-3830 |  | Pre-qualification and Material Approval for Guard Rail | 6d | 2026-01-14 A | 2026-03-24 A | CON-LEG101-SB-3820 | 100% | 2026-01-25 | 2026-02-01 | "GUARD RAIL [2.4]; Skilled Labor [122 h] | 4,320 | 4,320 | MKH2-02-002-SB-1750 | 0 | 0 | D6468 | 1 | Materia |
|  | 8 | **GRP Panel** |  | 2026-01-15 | 2026-03-08 |  |  |  |  |  |  |  |  |  |  |  |  |  |
| CON-LEG101-SB-3840 |  | Pre-qualification and Material Submittal for GRP Panel | 5d | 2026-01-15 A | 2026-01-20 A | CON-LEG101-SB-3820 SS | 100% |  |  | Skilled Labor [122 h] |  |  | MKH2-02-002-SB-1700 | 0 | 0 | D6478 | 1 | Materia |
| CON-LEG101-SB-3850 |  | Pre-qualification and Material Approval for GRP Panel | 6d | 2026-03-08 A | 2026-03-08 A | CON-LEG101-SB-3840 | 100% | 2026-03-12 | 2026-03-18 | "GRP PANEL [7.05]; Skilled Labor [122 h] | 11,280 | 11,280 | MKH2-02-002-SB-1750 | 0 | 0 | D6488 | 1 | Materia |
|  | 9 | **Logo MODON** |  | 2026-01-14 | 2026-02-07 |  |  |  |  |  |  |  |  |  |  |  |  |  |
| CON-LEG101-SB-3860 |  | Pre-qualification and Material Submittal for Logo MODON | 5d | 2026-01-14 A | 2026-01-20 A | CON-LEG101-SB-3840 SS | 100% | 2026-01-15 | 2026-01-20 | Skilled Labor [122 h] |  |  | MKH2-02-002-SB-1700 | 0 | 0 | D6498 | 1 | Materia |
| CON-LEG101-SB-3870 |  | Pre-qualification and Material Approval for Logo MODON | 6d | 2026-02-07 A | 2026-02-07 A | CON-LEG101-SB-3860 | 100% | 2026-02-08 | 2026-02-14 | "LOGO MODON [0.06]; Skilled Labor [122 h] | 4,800 | 4,800 | MKH2-02-002-SB-1750 | 0 | 0 | D6508 | 1 | Materia |
|  | 10 | **Bridge Gully (Scupper) drainage** |  | 2026-01-01 | 2026-02-05 |  |  |  |  |  |  |  |  |  |  |  |  |  |
| CON-LEG101-SB-3880 |  | Pre-qualification and Material Submittal for Bridge Gully (Scupper) drainage | 5d | 2026-01-01 A | 2026-02-01 A | CON-LEG101-SB-3780 SS | 100% | 2026-01-15 | 2026-01-20 | Skilled Labor [122 h] |  |  | MKH2-02-002-SB-1700 | 0 | 0 | D6518 | 1 | Materia |
| CON-LEG101-SB-3890 |  | Pre-qualification and Material Approval for Bridge Gully (Scupper) drainage | 6d | 2026-02-05 A | 2026-02-05 A | CON-LEG101-SB-3880 | 100% | 2026-02-11 | 2026-02-18 | "Bridge Gully (Scupper) drainage [0.09]; Skilled Labor [122 h] | 720 | 720 | MKH2-02-002-SB-1750 | 0 | 0 | D6528 | 1 | Materia |
|  | 10 | **Fence & Gates** |  | 2025-12-10 | 2026-01-24 |  |  |  |  |  |  |  |  |  |  |  |  |  |
|  | 1 | **Metal Fence** |  | 2025-12-10 | 2026-01-06 |  |  |  |  |  |  |  |  |  |  |  |  |  |
| CON-LEG101-SB-2270 |  | Pre-qualification and Material Submittal for Metal Fence | 5d | 2025-12-10 A | 2026-01-05 A | CON-LEG101-MB-1000, CON-LEG101-MS-1090 SS | 100% | 2025-12-20 | 2025-12-24 | Skilled Labor [122 h] |  |  | MKH2-02-002-SB-3060 | 0 | 0 | D3810 | 1 | Materia |
| CON-LEG101-SB-2310 |  | Pre-qualification and Material Approval for Metal Fence | 6d | 2026-01-01 A | 2026-01-06 A | CON-LEG101-SB-2270 | 100% | 2026-01-05 | 2026-01-12 | "Lean concrete [9.36]; Isolated footings [19.3]; Strip footings [32.07]; Grade beams [27.99]; Columns [6.75]; Retaining Walls [34.98]; "Supply and install cold applied bituminous paint waterproofing for R.C foundation and, as per drawings and specs section: [585.9]; "METAL FENCE [100.7]; Skilled Labor [122 h] | 341,825.5 | 341,827.5 | MKH2-02-002-SB-3070 | 0 | 0 | D3850 | 1 | Materia |
|  | 2 | **Gates** |  | 2025-12-10 | 2026-01-06 |  |  |  |  |  |  |  |  |  |  |  |  |  |
| CON-LEG101-SB-2290 |  | Pre-qualification and Material Submittal for Gates | 5d | 2025-12-10 A | 2026-01-05 A | CON-LEG101-SB-2270 SS+3d | 100% | 2025-12-23 | 2025-12-28 | Skilled Labor [122 h] |  |  | MKH2-02-002-SB-3060 | 0 | 0 | D3830 | 1 | Materia |
| CON-LEG101-SB-2330 |  | Pre-qualification and Material Approval for Gates | 6d | 2026-01-01 A | 2026-01-06 A | CON-LEG101-SB-2290 | 100% | 2026-01-11 | 2026-01-18 | Gate, to fit 15000mm opening x 2500mm high [0.09]; Gate, to fit 3600 mm opening x 2500mm high [0.09]; Skilled Labor [122 h] | 4,680 | 4,680 | MKH2-02-002-SB-3070 | 0 | 0 | D3870 | 1 | Materia |

| ID | WBS | Activity | Duration | Start | Finish | Predecessors | Complete | Planned start | Planned finish | Resources | Cost | Actual cost | USERTEXT | Weight 1 | Total Weight % | Mapping Sheet Activity ID | % A | JEDDAH 1 - Area Name |
| --- | --- | --- | --- | --- | --- | --- | --- | --- | --- | --- | --- | --- | --- | --- | --- | --- | --- | --- |
|  | 3 | **Paint On Cement Plaster** |  | 2025-12-16 | 2026-01-24 |  |  |  |  |  |  |  |  |  |  |  |  |  |
| CON-LEG101-SB-3900 |  | Pre-qualification and Material Submittal for Paint On Cement Plaster | 5d | 2025-12-16 A | 2025-12-16 A | CON-LEG101-SB-2290 | 100% | 2025-12-29 | 2026-01-03 | Skilled Labor [122 h] |  |  | MKH2-02-002-SB-3060 | 0 | 0 | D6538 | 1 | Materia |
| CON-LEG101-SB-3910 |  | Pre-qualification and Material Approval for Paint On Cement Plaster | 6d | 2026-01-06 A | 2026-01-24 A | CON-LEG101-SB-3900 | 100% | 2026-01-18 | 2026-01-25 | "PAINT ON CEMENT PLASTER [121.86]; Skilled Labor [122 h] | 7,311.6 | 7,311.6 | MKH2-02-002-SB-3070 | 0 | 0 | D6548 | 1 | Materia |
|  | 12 | **Telecommunications** |  | 2025-12-13 | 2026-01-24 |  |  |  |  |  |  |  |  |  |  |  |  |  |
|  | 2 | **Pipe for the Duct** |  | 2025-12-13 | 2026-01-21 |  |  |  |  |  |  |  |  |  |  |  |  |  |
| CON-LEG101-SB-3340 |  | Pre-qualification and Material Submittal for Pipe for the Duct | 7d | 2025-12-13 A | 2026-01-18 A | CON-LEG101-TP-1330, CON-LEG101-MB-1000 | 100% | 2025-12-20 | 2025-12-27 | Skilled Labor [122 h] |  |  | MKH2-02-002-SB-1410 | 0 | 0 | D5878 | 1 | Materia |
| CON-LEG101-SB-3350 |  | Pre-qualification and Material Approval for Pipe for the Duct | 6d | 2025-12-14 A | 2026-01-21 A | CON-LEG101-SB-3340 | 100% | 2025-12-28 | 2026-01-03 | Skilled Labor [122 h]; 6-ways ducts, 50mm diameter, (HDPE TYPE) . [165.78]; 2 x 32 mm HDPE sub-ducts [26.04]; 4 x 32 mm HDPE sub-ducts [5.16]; 6 x 32 mm HDPE sub-ducts [1.41]; 6-ways ducts, 50mm diameter, (HDPE TYPE) + 2 x 32 mm HDPE sub-ducts [77.43]; 6-ways ducts, 50mm diameter, (HDPE TYPE) + 4 x 32 mm HDPE sub-ducts [65.34]; 6-ways ducts, 50mm diameter, (HDPE TYPE) + 6 x 32 mm HDPE sub-ducts [25.74]; 6-ways ducts, 50mm diameter, (HDPE TYPE) . [25.53]; 6-ways ducts, 50mm diameter, (HDPE TYPE) + 2 x 32 mm HDPE sub-ducts [1.83] | 63,084.3 | 63,084.3 | MKH2-02-002-SB-1470 | 0 | 0 | D5888 | 1 | Materia |
|  | 5 | **Low Voltage Cables** |  | 2025-12-30 | 2026-01-24 |  |  |  |  |  |  |  |  |  |  |  |  |  |
| CON-LEG101-SB-3380 |  | Pre-qualification and Material Submittal for Low Voltage Cables | 6d | 2025-12-30 A | 2026-01-14 A | CON-LEG101-SB-3340 | 100% | 2026-01-05 | 2026-01-12 | Skilled Labor [122 h] |  |  | MKH2-02-002-SB-5260 | 0 | 0 | D5998 | 1 | Materia |
| CON-LEG101-SB-3390 |  | Pre-qualification and Material Approval for Low Voltage Cables | 6d | 2026-01-04 A | 2026-01-24 A | CON-LEG101-SB-3380 | 100% | 2026-01-21 | 2026-01-27 | Skilled Labor [122 h] |  |  | MKH2-02-002-SB-5270 | 0 | 0 | D6008 | 1 | Materia |
|  | 4 | **Manhole** |  | 2026-01-01 | 2026-01-06 |  |  |  |  |  |  |  |  |  |  |  |  |  |
| CON-LEG101-SB-3360 |  | Pre-qualification and Material Submittal for Manhole | 8d | 2026-01-01 A | 2026-01-01 A | CON-LEG101-SB-3380 | 100% | 2026-01-26 | 2026-02-04 | Skilled Labor [122 h] |  |  | MKH2-02-002-SB-1540 | 0 | 0 | D5918 | 1 | Materia |
| CON-LEG101-SB-3370 |  | Pre-qualification and Material Approval for Manhole | 6d | 2026-01-06 A | 2026-01-06 A | CON-LEG101-SB-3360 | 100% | 2026-02-04 | 2026-02-11 | Skilled Labor [122 h]; Reinforced concrete manhole Type 1- 1200x1500x1200mm [0.54]; Reinforced concrete manhole Type 2- 1200x1500x1200mm [1.77] | 39,270 | 39,270 | MKH2-02-002-SB-1550 | 0 | 0 | D5928 | 1 | Materia |
|  | 4 | **Electrical Network** |  | 2025-12-13 | 2026-11-09 |  |  |  |  |  |  |  |  |  |  |  |  |  |
|  | 2 | **Pipe for the Duct** |  | 2025-12-13 | 2026-01-21 |  |  |  |  |  |  |  |  |  |  |  |  |  |
| CON-LEG101-SB-1240 |  | Pre-qualification and Material Submittal for Pipe for the Duct | 7d | 2025-12-13 A | 2026-01-18 A | CON-LEG101-SB-3340 SS | 100% | 2025-12-20 | 2025-12-27 | Skilled Labor [122 h] |  |  | MKH2-02-002-SB-1410 | 0 | 0 | D2290 | 1 | Materia |
| CON-LEG101-SB-1270 |  | Pre-qualification and Material Approval for Pipe for the Duct | 6d | 2025-12-14 A | 2026-01-21 A | CON-LEG101-SB-1240 | 100% | 2025-12-28 | 2026-01-03 | "Excavation for Trench size 90cm wide and 80cm deep [121.62]; Skilled Labor [122 h]; Duct bank for (1) cables [15.75]; Duct bank for (2) cables [3]; Duct bank for (4) cables [2.25]; Duct bank for (3) cables [1.5]; Duct bank for (1) cables [9.75]; Duct bank for (2) cables [3.75] | 16,054.8 | 16,054.8 | MKH2-02-002-SB-1470 | 0 | 0 | D2350 | 1 | Materia |
|  | 5 | **Low Voltage Cables** |  | 2025-12-30 | 2026-01-24 |  |  |  |  |  |  |  |  |  |  |  |  |  |
| CON-LEG101-SB-1780 |  | Pre-qualification and Material Submittal for Low Voltage Cables | 3d | 2025-12-30 A | 2026-01-14 A | CON-LEG101-SB-1240 | 100% | 2026-01-05 | 2026-01-08 | Skilled Labor [122 h] |  |  | MKH2-02-002-SB-5260 | 0 | 0 | D3140 | 1 | Materia |
| CON-LEG101-SB-1790 |  | Pre-qualification and Material Approval for Low Voltage Cables | 6d | 2026-01-04 A | 2026-01-24 A | CON-LEG101-SB-1780 | 100% | 2026-01-18 | 2026-01-24 | Skilled Labor [122 h]; Stranded armored Cables, Copper, 4C,50mm² XLPE /SWA/PVC [0.6]; Stranded armored Cables, Copper, 4C,35mm² XLPE/SWA /PVC [78]; Stranded armored Cables, Copper, 4xC16mm² XLPE /SWA/PVC [510]; Single Core Cable, Copper 1C,16mm² CU/PVC For Earth [78]; Single Core Cable, Copper 1C,10mm² CU/PVC For Earth [510]; Single Core Cable, Copper 1C,25mm² CU/PVC For Earth [0.6] | 46,446 | 46,446 | MKH2-02-002-SB-5270 | 0 | 0 | D3150 | 1 | Materia |
|  | 6 | **Lighting poles** |  | 2025-12-28 | 2026-01-24 |  |  |  |  |  |  |  |  |  |  |  |  |  |
| CON-LEG101-SB-1820 |  | Pre-qualification and Material Submittal for Lighting poles | 5d | 2025-12-28 A | 2026-01-14 A | CON-LEG101-SB-1780 | 100% | 2026-01-05 | 2026-01-11 | Skilled Labor [122 h] |  |  | MKH2-02-002-SB-5300 | 0 | 0 | D3180 | 1 | Materia |
| CON-LEG101-SB-1830 |  | Pre-qualification and Material Approval for Lighting poles | 6d | 2026-01-04 A | 2026-01-24 A | CON-LEG101-SB-1820 | 100% | 2026-01-21 | 2026-01-28 | Lighting poles with 1 arm, height of (8 ) meters, including the power distribution box, cables, and RCC foundation. [13.29]; Skilled Labor [122 h] | 45,186 | 45,186 | MKH2-02-002-SB-5310 | 0 | 0 | D3190 | 1 | Materia |
|  | 7 | **Street Lighting Luminaire** |  | 2025-12-28 | 2026-01-24 |  |  |  |  |  |  |  |  |  |  |  |  |  |
| CON-LEG101-SB-1860 |  | Pre-qualification and Material Submittal for Street Lighting Luminaire | 5d | 2025-12-28 A | 2026-01-14 A | CON-LEG101-SB-1820 SS | 100% | 2026-01-05 | 2026-01-11 | Skilled Labor [122 h] |  |  | MKH2-02-002-SB-5340 | 0 | 0 | D3220 | 1 | Materia |
| CON-LEG101-SB-1870 |  | Pre-qualification and Material Approval for Street Lighting Luminaire | 6d | 2026-01-06 A | 2026-01-24 A | CON-LEG101-SB-1860 | 100% | 2026-01-21 | 2026-01-28 | Street Lighting( LED) Luminous efficacy ? 120Lum/w complete with control gear and lamp, (100) WATT. Max. [13.29]; Skilled Labor [122 h] | 13,290 | 13,290 | MKH2-02-002-SB-5350 | 0 | 0 | D3230 | 1 | Materia |

| ID | WBS | Activity | Duration | Start | Finish | Predecessors | Complete | Remaining | Planned start | Planned finish | Total float | Free float | Resources | Cost | Actual cost | USERTEXT | Weight 1 | Total Weight % | Mapping Sheet Activity ID | % A | JEDDAH 1 - Area Name |
| --- | --- | --- | --- | --- | --- | --- | --- | --- | --- | --- | --- | --- | --- | --- | --- | --- | --- | --- | --- | --- | --- |
|  | 11 | **Medium Voltage Cable** |  | 2025-12-30 | 2026-02-05 |  |  |  |  |  |  |  |  |  |  |  |  |  |  |  |  |
| CON-LEG101-SB-1660 |  | Pre-qualification and Material Submittal for Medium Voltage Cable | 5d | 2025-12-30 A | 2026-01-28 A | CON-LEG101-SB-1860 SS | 100% |  | 2026-01-08 | 2026-01-14 |  |  | Skilled Labor [122 h] |  |  | MKH2-02-002-SB-5100 | 0 | 0 | D3020 | 1 | Materia |
| CON-LEG101-SB-1670 |  | Pre-qualification and Material Approval for Medium Voltage Cable | 6d | 2026-01-04 A | 2026-02-05 A | CON-LEG101-SB-1660 | 100% |  | 2026-01-21 | 2026-01-28 |  |  | Cable 13.8 kV (3-C)x 50 mm² CU /XLPE/PVC, Unarmored [0.6]; Skilled Labor [122 h]; Cable 13.8 kV 3Cx 500 mm² Al XLPE,/LLDPE / Unarmored [435] | 96,000 | 96,000 | MKH2-02-002-SB-5110 | 0 | 0 | D3030 | 1 | Materia |
|  | 3 | **Cable Termination & Joints** |  | 2025-12-30 | 2026-02-05 |  |  |  |  |  |  |  |  |  |  |  |  |  |  |  |  |
| CON-LEG101-SB-1300 |  | Pre-qualification and Material Submittal for Cable Termination & Joints | 3d | 2025-12-30 A | 2026-01-28 A | CON-LEG101-SB-1660 SS | 100% |  | 2026-01-18 | 2026-01-20 |  |  | Skilled Labor [122 h] |  |  | MKH2-02-002-SB-1500 | 0 | 0 | D2380 | 1 | Materia |
| CON-LEG101-SB-1310 |  | Pre-qualification and Material Approval for Cable Termination & Joints | 6d | 2026-01-04 A | 2026-02-05 A | CON-LEG101-SB-1300 | 100% |  | 2026-01-21 | 2026-01-27 |  |  | Cable Termination for 13.8 kv (3-C)x 50 mm² CU /XLPE/PVC, Unarmored. [0.24]; Skilled Labor [122 h]; Straight joints cables for 13.8 kv 3Cx 500 mm², Al /XLPE/LLDPE [1.07]; Cable Termination for 13.8 kv 3Cx 500 mm², Al /XLPE/LLDPE [0.84] | 5,828 | 5,828 | MKH2-02-002-SB-1510 | 0 | 0 | D2390 | 1 | Materia |
|  | 13 | **Ring Main Unit** |  | 2026-01-13 | 2026-11-09 |  |  |  |  |  |  |  |  |  |  |  |  |  |  |  |  |
| CON-LEG101-SB-1710 |  | Pre-qualification and Material Approval for Ring Main Unit | 6d | 2026-01-13 A | 2026-11-09 | CON-LEG101-SB-1700 | 30% | 4.2d | 2026-02-11 | 2026-02-17 | -61.2d | 0d | Normally Open Point (R M U) 13.8 kv for Outdoor type according to the Saudi Electric Company specifications and requirements. [0.21]; Ring Main Unit RMU, 13.8KV, According to the specifications and standards of SEC [0.12]; Skilled Labor [122 h] | 21,600 | 6,480 | MKH2-02-002-SB-5190 | 0 | 0 | D3070 | 0.3 | Materia |
| CON-LEG101-SB-1700 |  | Pre-qualification and Material Submittal for Ring Main Unit | 3d | 2026-01-14 A | 2026-01-14 A | CON-LEG101-SB-1300 SS | 100% |  | 2026-01-24 | 2026-01-26 |  |  | Skilled Labor [122 h] |  |  | MKH2-02-002-SB-5180 | 0 | 0 | D3060 | 1 | Materia |
|  | 14 | **Street Lighting Sub-station** |  | 2026-01-13 | 2026-11-09 |  |  |  |  |  |  |  |  |  |  |  |  |  |  |  |  |
| CON-LEG101-SB-1750 |  | Pre-qualification and Material Approval for Street Lighting Sub-station | 6d | 2026-01-13 A | 2026-11-09 | CON-LEG101-SB-1740 | 30% | 4.2d | 2026-02-11 | 2026-02-17 | -56.2d | 0d | Unit Substation 13.8/0.4 K V, 500kVA ,Including concrete foundations and fencing, According to the specifications and standards of SEC [0.12]; Skilled Labor [122 h] | 10,200 | 3,060 | MKH2-02-002-SB-5230 | 0 | 0 | D3110 | 0.3 | Materia |
| CON-LEG101-SB-1740 |  | Pre-qualification and Material Submittal for Street Lighting Sub-station | 3d | 2026-01-14 A | 2026-01-14 A | CON-LEG101-SB-1700 SS | 100% |  | 2026-01-24 | 2026-01-26 |  |  | Skilled Labor [122 h] |  |  | MKH2-02-002-SB-5220 | 0 | 0 | D3100 | 1 | Materia |
|  | 4 | **Earthing System** |  | 2026-01-14 | 2026-01-21 |  |  |  |  |  |  |  |  |  |  |  |  |  |  |  |  |
| CON-LEG101-SB-1340 |  | Pre-qualification and Material Submittal for Earthing System | 3d | 2026-01-14 A | 2026-01-14 A | CON-LEG101-SB-1740 SS | 100% |  | 2026-01-24 | 2026-01-26 |  |  | Skilled Labor [122 h] |  |  | MKH2-02-002-SB-1540 | 0 | 0 | D2420 | 1 | Materia |
| CON-LEG101-SB-1350 |  | Pre-qualification and Material Approval for Earthing System | 6d | 2026-01-21 A | 2026-01-21 A | CON-LEG101-SB-1340 | 100% |  | 2026-01-24 | 2026-01-29 |  |  | Earthing for Distribution panels,SL feeder pillars, KWH, Unit substations and RMU [0.66]; Earthing for Streetlighting feeders for every end pole circuits. [1.17]; Earthing for Industrial switch poles and GSM towers [0.27]; Skilled Labor [122 h] | 5,385 | 5,385 | MKH2-02-002-SB-1550 | 0 | 0 | D2430 | 1 | Materia |
|  | 1 | **Lighting panels** |  | 2026-01-13 | 2026-04-15 |  |  |  |  |  |  |  |  |  |  |  |  |  |  |  |  |
| CON-LEG101-SB-2430 |  | Pre-qualification and Material Approval for Lighting panels | 6d | 2026-01-13 A | 2026-04-15 A | CON-LEG101-SB-2390 | 100% |  | 2026-02-11 | 2026-02-17 |  |  | Main 100A MCCB with outgoing [0.12]; Skilled Labor [122 h] | 2,400 | 2,400 | MKH2-02-002-SB-5310 | 0 | 0 | D4768 | 1 | Materia |
| CON-LEG101-SB-2390 |  | Pre-qualification and Material Submittal for Lighting panels | 3d | 2026-01-14 A | 2026-01-14 A | CON-LEG101-SB-1340 SS | 100% |  | 2026-01-24 | 2026-01-26 |  |  | Skilled Labor [122 h] |  |  | MKH2-02-002-SB-5300 | 0 | 0 | D4728 | 1 | Materia |
|  | 8 | **System for KWHM** |  | 2026-01-13 | 2026-04-15 |  |  |  |  |  |  |  |  |  |  |  |  |  |  |  |  |
| CON-LEG101-SB-1910 |  | Pre-qualification and Material Approval for System for KWHM | 6d | 2026-01-13 A | 2026-04-15 A | CON-LEG101-SB-1900 | 100% |  | 2026-02-11 | 2026-02-17 |  |  | Supply and installation of KWH meter mounting frame including concrete block wall for KWH meter inculding foundations and finishings according to the standareds and specification of SEC [0.12]; Skilled Labor [122 h] | 1,200 | 1,200 | MKH2-02-002-SB-5390 | 0 | 0 | D3270 | 1 | Materia |
| CON-LEG101-SB-1900 |  | Pre-qualification and Material Submittal for System for KWHM | 3d | 2026-01-14 A | 2026-01-14 A | CON-LEG101-SB-2390 SS | 100% |  | 2026-01-24 | 2026-01-26 |  |  | Skilled Labor [122 h] |  |  | MKH2-02-002-SB-5380 | 0 | 0 | D3260 | 1 | Materia |
|  | 9 | **Feeder Piller** |  | 2026-01-13 | 2026-04-15 |  |  |  |  |  |  |  |  |  |  |  |  |  |  |  |  |
| CON-LEG101-SB-1950 |  | Pre-qualification and Material Approval for Feeder Piller | 6d | 2026-01-13 A | 2026-04-15 A | CON-LEG101-SB-1940 | 100% |  | 2026-02-11 | 2026-02-17 |  |  | Street Lighting feeder pillars [0.3]; Skilled Labor [122 h] | 10,500 | 10,500 | MKH2-02-002-SB-5430 | 0 | 0 | D3310 | 1 | Materia |
| CON-LEG101-SB-1940 |  | Pre-qualification and Material Submittal for Feeder Piller | 3d | 2026-01-14 A | 2026-01-14 A | CON-LEG101-SB-1900 SS | 100% |  | 2026-01-24 | 2026-01-26 |  |  | Skilled Labor [122 h] |  |  | MKH2-02-002-SB-5420 | 0 | 0 | D3300 | 1 | Materia |

| ID | WBS | Activity | Duration | Start | Finish | Predecessors | Complete | Planned start | Planned finish | Resources | Cost | Actual cost | USERTEXT | Weight 1 | Total Weight % | Mapping Sheet Activity ID | % A | JEDDAH 1 - Area Name |
| --- | --- | --- | --- | --- | --- | --- | --- | --- | --- | --- | --- | --- | --- | --- | --- | --- | --- | --- |
|  | 10 | **Street Lighting Panels** |  | 2026-01-14 | 2026-04-15 |  |  |  |  |  |  |  |  |  |  |  |  |  |
| CON-LEG101-SB-1980 |  | Pre-qualification and Material Submittal for Street Lighting Panels | 3d | 2026-01-14 A | 2026-01-14 A | CON-LEG101-SB-1940 SS | 100% | 2026-01-24 | 2026-01-26 | Skilled Labor [122 h] |  |  | MKH2-02-002-SB-5460 | 0 | 0 | D3340 | 1 | Materia |
| CON-LEG101-SB-1990 |  | Pre-qualification and Material Approval for Street Lighting Panels | 6d | 2026-01-14 A | 2026-04-15 A | CON-LEG101-SB-1980 | 100% | 2026-02-11 | 2026-02-17 | Skilled Labor [122 h] |  |  | MKH2-02-002-SB-5470 | 0 | 0 | D3350 | 1 | Materia |
|  | 8 | **CCTV feeding system and GSM** |  | 2026-01-12 | 2026-04-05 |  |  |  |  |  |  |  |  |  |  |  |  |  |
|  | 2 | **Fiber Optic Patch Panel 12 port** |  | 2026-01-12 | 2026-04-05 |  |  |  |  |  |  |  |  |  |  |  |  |  |
| CON-LEG101-SB-3400 |  | Pre-qualification and Material Submittal for Fiber Optic Patch Panel 12 port | 6d | 2026-01-12 A | 2026-01-15 A | CON-LEG101-SB-1780 SS | 100% | 2026-01-19 | 2026-01-26 | Skilled Labor [122 h] |  |  | MKH2-02-002-SB-1410 | 0 | 0 | D6018 | 1 | Materia |
| CON-LEG101-SB-3410 |  | Pre-qualification and Material Approval for Fiber Optic Patch Panel 12 port | 6d | 2026-01-20 A | 2026-04-05 A | CON-LEG101-SB-3400 | 100% | 2026-01-22 | 2026-01-28 | Skilled Labor [122 h]; Stranded Copper wire, , 3xC,2 mm² XLPE/PVC [5.25]; Fiber Optic Patch Panel 12 port [0.06]; Stranded armored Cables, Copper, 4C,35mm² XLPE/SWA /PVC [18.6]; Stranded armored Cables, Copper, 4xC16mm² XLPE /SWA/PVC [70.5]; Single Core Cable, Copper 1C,16mm² CU/PVC For Earth [18.6]; Single Core Cable, Copper 1C,10mm² CU/PVC For Earth [70.5]; Duct bank for (1) cables [7.5] | 10,740 | 10,740 | MKH2-02-002-SB-1470 | 0 | 0 | D6028 | 1 | Materia |
|  | 5 | **Modular Industrial Switches for main pole** |  | 2026-01-12 | 2026-04-05 |  |  |  |  |  |  |  |  |  |  |  |  |  |
| CON-LEG101-SB-3500 |  | Pre-qualification and Material Submittal for Modular Industrial Switches for main pole | 3d | 2026-01-12 A | 2026-01-15 A | CON-LEG101-SB-3400 | 100% | 2026-01-26 | 2026-01-29 | Skilled Labor [122 h] |  |  | MKH2-02-002-SB-5260 | 0 | 0 | D6138 | 1 | Materia |
| CON-LEG101-SB-3510 |  | Pre-qualification and Material Approval for Modular Industrial Switches for main pole | 6d | 2026-01-20 A | 2026-04-05 A | CON-LEG101-SB-3500 | 100% | 2026-01-22 | 2026-01-28 | Skilled Labor [122 h]; Modular Industrial Switches for main pole [0.03] | 450 | 450 | MKH2-02-002-SB-5270 | 0 | 0 | D6148 | 1 | Materia |
|  | 11 | **8POE ports Industrial Switches for remote poles** |  | 2026-01-12 | 2026-04-05 |  |  |  |  |  |  |  |  |  |  |  |  |  |
| CON-LEG101-SB-3440 |  | Pre-qualification and Material Submittal for 8POE ports Industrial Switches for remote poles | 5d | 2026-01-12 A | 2026-01-15 A | CON-LEG101-SB-3500 | 100% | 2026-01-29 | 2026-02-04 | Skilled Labor [122 h] |  |  | MKH2-02-002-SB-5100 | 0 | 0 | D6078 | 1 | Materia |
| CON-LEG101-SB-3450 |  | Pre-qualification and Material Approval for 8POE ports Industrial Switches for remote poles | 6d | 2026-01-20 A | 2026-04-05 A | CON-LEG101-SB-3440 | 100% | 2026-01-22 | 2026-01-28 | Skilled Labor [122 h]; 8POE ports Industrial Switches for remote poles [0.18] | 1,800 | 1,800 | MKH2-02-002-SB-5110 | 0 | 0 | D6088 | 1 | Materia |
|  | 3 | **Core Switch** |  | 2026-01-12 | 2026-04-05 |  |  |  |  |  |  |  |  |  |  |  |  |  |
| CON-LEG101-SB-3420 |  | Pre-qualification and Material Submittal for Core Switch | 5d | 2026-01-12 A | 2026-01-15 A | CON-LEG101-SB-3440 SS | 100% | 2026-01-29 | 2026-02-04 | Skilled Labor [122 h] |  |  | MKH2-02-002-SB-1500 | 0 | 0 | D6038 | 1 | Materia |
| CON-LEG101-SB-3430 |  | Pre-qualification and Material Approval for Core Switch | 6d | 2026-01-20 A | 2026-04-05 A | CON-LEG101-SB-3420 | 100% | 2026-01-22 | 2026-01-28 | Skilled Labor [122 h]; CORE SWITCH [0.06] | 1,800 | 1,800 | MKH2-02-002-SB-1510 | 0 | 0 | D6048 | 1 | Materia |
|  | 13 | **Access Switch 48 port** |  | 2026-01-12 | 2026-04-05 |  |  |  |  |  |  |  |  |  |  |  |  |  |
| CON-LEG101-SB-3460 |  | Pre-qualification and Material Submittal for Access Switch 48 port | 5d | 2026-01-12 A | 2026-01-15 A | CON-LEG101-SB-3420 SS | 100% | 2026-01-29 | 2026-02-04 | Skilled Labor [122 h] |  |  | MKH2-02-002-SB-5180 | 0 | 0 | D6098 | 1 | Materia |
| CON-LEG101-SB-3470 |  | Pre-qualification and Material Approval for Access Switch 48 port | 6d | 2026-01-20 A | 2026-04-05 A | CON-LEG101-SB-3460 | 100% | 2026-01-22 | 2026-01-28 | Skilled Labor [122 h]; Access Switch 48 port [0.06] | 900 | 900 | MKH2-02-002-SB-5190 | 0 | 0 | D6108 | 1 | Materia |
|  | 14 | **Server** |  | 2026-01-12 | 2026-04-05 |  |  |  |  |  |  |  |  |  |  |  |  |  |
| CON-LEG101-SB-3480 |  | Pre-qualification and Material Submittal for Server | 5d | 2026-01-12 A | 2026-01-15 A | CON-LEG101-SB-3460 SS | 100% | 2026-01-29 | 2026-02-04 | Skilled Labor [122 h] |  |  | MKH2-02-002-SB-5220 | 0 | 0 | D6118 | 1 | Materia |
| CON-LEG101-SB-3490 |  | Pre-qualification and Material Approval for Server | 6d | 2026-01-20 A | 2026-04-05 A | CON-LEG101-SB-3480 | 100% | 2026-01-22 | 2026-01-28 | Skilled Labor [122 h]; SERVER [0.09] | 5,850 | 5,850 | MKH2-02-002-SB-5230 | 0 | 0 | D6128 | 1 | Materia |
|  | 6 | **Stand rack 42U- 19"** |  | 2026-01-12 | 2026-04-05 |  |  |  |  |  |  |  |  |  |  |  |  |  |
| CON-LEG101-SB-3520 |  | Pre-qualification and Material Submittal for Stand rack 42U- 19" | 5d | 2026-01-12 A | 2026-01-15 A | CON-LEG101-SB-3480 SS | 100% | 2026-01-29 | 2026-02-04 | Skilled Labor [122 h] |  |  | MKH2-02-002-SB-5300 | 0 | 0 | D6158 | 1 | Materia |
| CON-LEG101-SB-3530 |  | Pre-qualification and Material Approval for Stand rack 42U- 19" | 6d | 2026-01-20 A | 2026-04-05 A | CON-LEG101-SB-3520 | 100% | 2026-01-22 | 2026-01-28 | Skilled Labor [122 h]; Stand rack 42U- 19" completed with ,ventilation fans, earthling connections, labeling and should be equipped with an extra capacity of 20% for future increase. [0.06] | 900 | 900 | MKH2-02-002-SB-5310 | 0 | 0 | D6168 | 1 | Materia |

| ID | WBS | Activity | Duration | Start | Finish | Predecessors | Complete | Planned start | Planned finish | Resources | Cost | Actual cost | USERTEXT | Weight 1 | Total Weight % | Mapping Sheet Activity ID | % A | JEDDAH 1 - Area Name |
| --- | --- | --- | --- | --- | --- | --- | --- | --- | --- | --- | --- | --- | --- | --- | --- | --- | --- | --- |
|  | 1 | **IP Outdoor CCTV POE Camera,5 MP, Metal Housing** |  | 2026-01-12 | 2026-04-05 |  |  |  |  |  |  |  |  |  |  |  |  |  |
| CON-LEG101-SB-3620 |  | Pre-qualification and Material Submittal for IP Outdoor CCTV POE Camera,5 MP, Metal Housing | 5d | 2026-01-12 A | 2026-01-15 A | CON-LEG101-SB-3520 SS | 100% | 2026-01-29 | 2026-02-04 | Skilled Labor [122 h] |  |  | MKH2-02-002-SB-5300 | 0 | 0 | D6258 | 1 | Materia |
| CON-LEG101-SB-3630 |  | Pre-qualification and Material Approval for IP Outdoor CCTV POE Camera,5 MP, Metal Housing | 6d | 2026-01-20 A | 2026-04-05 A | CON-LEG101-SB-3620 | 100% | 2026-01-22 | 2026-01-28 | Skilled Labor [122 h]; IP Outdoor CCTV POE Camera,5 MP, Metal Housing [0.84] | 4,200 | 4,200 | MKH2-02-002-SB-5310 | 0 | 0 | D6268 | 1 | Materia |
|  | 7 | **Outdoor PTZ with IR, HDTV 1080 and 31x optical, 12x digital** |  | 2026-01-12 | 2026-04-05 |  |  |  |  |  |  |  |  |  |  |  |  |  |
| CON-LEG101-SB-3540 |  | Pre-qualification and Material Submittal for Outdoor PTZ with IR, HDTV 1080 and 31x optical, 12x digital | 5d | 2026-01-12 A | 2026-01-15 A | CON-LEG101-SB-3620 SS | 100% | 2026-01-29 | 2026-02-04 | Skilled Labor [122 h] |  |  | MKH2-02-002-SB-5340 | 0 | 0 | D6178 | 1 | Materia |
| CON-LEG101-SB-3550 |  | Pre-qualification and Material Approval for Outdoor PTZ with IR, HDTV 1080 and 31x optical, 12x digital | 6d | 2026-01-20 A | 2026-04-05 A | CON-LEG101-SB-3540 | 100% | 2026-01-22 | 2026-01-28 | Skilled Labor [122 h]; "Outdoor PTZ with IR, HDTV 1080 and 31x optical, 12x digital, total 372x zoom, H264/265 with Motion JPEG. [0.21] | 7,350 | 7,350 | MKH2-02-002-SB-5350 | 0 | 0 | D6188 | 1 | Materia |
|  | 8 | **Security workstation with 1 x 19" LED screen** |  | 2026-01-12 | 2026-04-05 |  |  |  |  |  |  |  |  |  |  |  |  |  |
| CON-LEG101-SB-3560 |  | Pre-qualification and Material Submittal for Security workstation with 1 x 19" LED screen | 5d | 2026-01-12 A | 2026-01-15 A | CON-LEG101-SB-3540 SS | 100% | 2026-01-29 | 2026-02-04 | Skilled Labor [122 h] |  |  | MKH2-02-002-SB-5380 | 0 | 0 | D6198 | 1 | Materia |
| CON-LEG101-SB-3570 |  | Pre-qualification and Material Approval for Security workstation with 1 x 19" LED screen | 6d | 2026-01-20 A | 2026-04-05 A | CON-LEG101-SB-3560 | 100% | 2026-01-22 | 2026-01-28 | Skilled Labor [122 h]; Security workstation with 1 x 19" LED screen including graphic video cards, software, license and interfaces required for the system [0.03] | 750 | 750 | MKH2-02-002-SB-5390 | 0 | 0 | D6208 | 1 | Materia |
|  | 9 | **LED Screen 43" (24/7 operation) with Ethernet decoders** |  | 2026-01-12 | 2026-04-05 |  |  |  |  |  |  |  |  |  |  |  |  |  |
| CON-LEG101-SB-3580 |  | Pre-qualification and Material Submittal for LED Screen 43" (24/7 operation) with Ethernet decoders | 5d | 2026-01-12 A | 2026-01-15 A | CON-LEG101-SB-3560 SS | 100% | 2026-01-29 | 2026-02-04 | Skilled Labor [122 h] |  |  | MKH2-02-002-SB-5420 | 0 | 0 | D6218 | 1 | Materia |
| CON-LEG101-SB-3590 |  | Pre-qualification and Material Approval for LED Screen 43" (24/7 operation) with Ethernet decoders | 6d | 2026-01-20 A | 2026-04-05 A | CON-LEG101-SB-3580 | 100% | 2026-01-22 | 2026-01-28 | Skilled Labor [122 h]; LED Screen 43" (24/7 operation) with Ethernet decoders [0.12] | 1,800 | 1,800 | MKH2-02-002-SB-5430 | 0 | 0 | D6228 | 1 | Materia |
|  | 10 | **Network Video Recorder 4k 64 Channel** |  | 2026-01-12 | 2026-04-05 |  |  |  |  |  |  |  |  |  |  |  |  |  |
| CON-LEG101-SB-3600 |  | Pre-qualification and Material Submittal for Network Video Recorder 4k 64 Channel | 5d | 2026-01-12 A | 2026-01-15 A | CON-LEG101-SB-3580 SS | 100% | 2026-01-29 | 2026-02-04 | Skilled Labor [122 h] |  |  | MKH2-02-002-SB-5460 | 0 | 0 | D6238 | 1 | Materia |
| CON-LEG101-SB-3610 |  | Pre-qualification and Material Approval for Network Video Recorder 4k 64 Channel | 6d | 2026-01-20 A | 2026-04-05 A | CON-LEG101-SB-3600 | 100% | 2026-01-22 | 2026-01-28 | Skilled Labor [122 h]; Network Video Recorder 4k 64 Channel, Up to 12 MP high-definition live view, storage and playback, 2 HDMI (different source) and 2 VGA (different source) interfaces (Min). [0.03] | 1,500 | 1,500 | MKH2-02-002-SB-5470 | 0 | 0 | D6248 | 1 | Materia |
|  | 12 | **Keypad** |  | 2026-01-12 | 2026-04-05 |  |  |  |  |  |  |  |  |  |  |  |  |  |
| CON-LEG101-SB-3640 |  | Pre-qualification and Material Submittal for Keypad | 5d | 2026-01-12 A | 2026-01-15 A | CON-LEG101-SB-3600 SS | 100% | 2026-01-29 | 2026-02-04 | Skilled Labor [122 h] |  |  | MKH2-02-002-SB-5460 | 0 | 0 | D6278 | 1 | Materia |
| CON-LEG101-SB-3650 |  | Pre-qualification and Material Approval for Keypad | 6d | 2026-01-20 A | 2026-04-05 A | CON-LEG101-SB-3640 | 100% | 2026-01-22 | 2026-01-28 | Skilled Labor [122 h]; Keypad [0.03] | 3,000 | 3,000 | MKH2-02-002-SB-5470 | 0 | 0 | D6288 | 1 | Materia |
|  | 15 | **Horizontal Power Distribution Unit (min 8 outlets)** |  | 2026-01-12 | 2026-04-05 |  |  |  |  |  |  |  |  |  |  |  |  |  |
| CON-LEG101-SB-3660 |  | Pre-qualification and Material Submittal for Horizontal Power Distribution Unit (min 8 outlets) | 5d | 2026-01-12 A | 2026-01-15 A | CON-LEG101-SB-3640 SS | 100% | 2026-01-29 | 2026-02-04 | Skilled Labor [122 h] |  |  | MKH2-02-002-SB-5460 | 0 | 0 | D6298 | 1 | Materia |
| CON-LEG101-SB-3670 |  | Pre-qualification and Material Approval for Horizontal Power Distribution Unit (min 8 outlets) | 6d | 2026-01-20 A | 2026-04-05 A | CON-LEG101-SB-3660 | 100% | 2026-01-22 | 2026-01-28 | Skilled Labor [122 h]; Horizontal Power Distribution Unit (min 8 outlets) [0.06] | 600 | 600 | MKH2-02-002-SB-5470 | 0 | 0 | D6308 | 1 | Materia |
|  | 16 | **35 Meters mono pole with Double Platform for Access Points** |  | 2026-01-12 | 2026-04-05 |  |  |  |  |  |  |  |  |  |  |  |  |  |
| CON-LEG101-SB-3680 |  | Pre-qualification and Material Submittal for 35 Meters mono pole with Double Platform for Access Points | 5d | 2026-01-12 A | 2026-01-15 A | CON-LEG101-SB-3660 SS | 100% | 2026-01-21 | 2026-01-26 | Skilled Labor [122 h] |  |  | MKH2-02-002-SB-5460 | 0 | 0 | D6318 | 1 | Materia |
| CON-LEG101-SB-3690 |  | Pre-qualification and Material Approval for 35 Meters mono pole with Double Platform for Access Points | 6d | 2026-01-20 A | 2026-04-05 A | CON-LEG101-SB-3680 | 100% | 2026-01-22 | 2026-01-28 | Skilled Labor [122 h]; "35 Meters mono pole with Double Platform for Access Points including : [0.03] | 4,800 | 4,800 | MKH2-02-002-SB-5470 | 0 | 0 | D6328 | 1 | Materia |

| ID | WBS | Activity | Duration | Start | Finish | Predecessors | Complete | Planned start | Planned finish | Resources | Cost | Actual cost | USERTEXT | Weight 1 | Total Weight % | Mapping Sheet Activity ID | % A | JEDDAH 1 - Area Name |
| --- | --- | --- | --- | --- | --- | --- | --- | --- | --- | --- | --- | --- | --- | --- | --- | --- | --- | --- |
|  | 17 | **25 Meters pole for CCTV Cameras** |  | 2026-01-12 | 2026-04-05 |  |  |  |  |  |  |  |  |  |  |  |  |  |
| CON-LEG101-SB-3700 |  | Pre-qualification and Material Submittal for 25 Meters pole for CCTV Cameras | 5d | 2026-01-12 A | 2026-01-15 A | CON-LEG101-SB-3680 SS | 100% | 2026-01-21 | 2026-01-26 | Skilled Labor [122 h] |  |  | MKH2-02-002-SB-5460 | 0 | 0 | D6338 | 1 | Materia |
| CON-LEG101-SB-3710 |  | Pre-qualification and Material Approval for 25 Meters pole for CCTV Cameras | 6d | 2026-01-20 A | 2026-04-05 A | CON-LEG101-SB-3700 | 100% | 2026-01-22 | 2026-01-28 | Skilled Labor [122 h]; "25 Meters pole for CCTV Cameras including : [0.18] | 23,400 | 23,400 | MKH2-02-002-SB-5470 | 0 | 0 | D6348 | 1 | Materia |
|  | 18 | **Short Range wireless point to point wireless bridge** |  | 2026-01-12 | 2026-04-05 |  |  |  |  |  |  |  |  |  |  |  |  |  |
| CON-LEG101-SB-3720 |  | Pre-qualification and Material Submittal for Short Range wireless point to point wireless bridge | 5d | 2026-01-12 A | 2026-01-15 A | CON-LEG101-SB-3700 SS | 100% | 2026-01-29 | 2026-02-04 | Skilled Labor [122 h] |  |  | MKH2-02-002-SB-5460 | 0 | 0 | D6358 | 1 | Materia |
| CON-LEG101-SB-3730 |  | Pre-qualification and Material Approval for Short Range wireless point to point wireless bridge | 6d | 2026-01-20 A | 2026-04-05 A | CON-LEG101-SB-3720 | 100% | 2026-01-22 | 2026-01-28 | Skilled Labor [122 h]; Short Range wireless point to point wireless bridge [0.36] | 4,680 | 4,680 | MKH2-02-002-SB-5470 | 0 | 0 | D6368 | 1 | Materia |
|  | 11 | **Irrigation Works** |  | 2026-01-03 | 2026-02-19 |  |  |  |  |  |  |  |  |  |  |  |  |  |
|  | 2 | **16 mm dia (O.D.) linear low density polyethylene tubing** |  | 2026-01-03 | 2026-01-06 |  |  |  |  |  |  |  |  |  |  |  |  |  |
| CON-LEG101-SB-3930 |  | Pre-qualification and Material Submittal for Steel Fence for 16 mm dia (O.D.) linear low density polyethylene tubing | 5d | 2026-01-03 A | 2026-01-03 A | CON-LEG101-SB-1420 | 100% | 2026-01-18 | 2026-01-22 | Skilled Labor [122 h] |  |  | MKH2-02-002-SB-1700 | 0 | 0 | D6568 | 1 | Materia |
| CON-LEG101-SB-3950 |  | Pre-qualification and Material Approval for Steel Fence for 16 mm dia (O.D.) linear low density polyethylene tubing | 6d | 2026-01-06 A | 2026-01-06 A | CON-LEG101-SB-3930 | 100% | 2026-01-24 | 2026-01-29 | Supply and installation of 16 mm dia (O.D.) linear low density polyethylene tubing including in line P.C. emitters, accessories, stakes, takeoff /risers connections from laterals, and all requirements needed to finish work as per drawings (In line dripper [820.35]; Skilled Labor [122 h] | 32,814 | 32,814 | MKH2-02-002-SB-1750 | 0 | 0 | D6588 | 1 | Materia |
|  | 3 | **Irrigation Controller** |  | 2026-01-13 | 2026-02-19 |  |  |  |  |  |  |  |  |  |  |  |  |  |
| CON-LEG101-SB-3960 |  | Pre-qualification and Material Submittal for Steel Fence for Irrigation Controller | 5d | 2026-01-13 A | 2026-01-13 A | CON-LEG101-SB-3930 SS+2d | 100% | 2026-01-19 | 2026-01-24 | Skilled Labor [122 h] |  |  | MKH2-02-002-SB-1700 | 0 | 0 | D6598 | 1 | Materia |
| CON-LEG101-SB-3970 |  | Pre-qualification and Material Approval for Steel Fence for Irrigation Controller | 6d | 2026-01-20 A | 2026-02-19 A | CON-LEG101-SB-3960 | 100% | 2026-01-26 | 2026-02-01 | Supply and installation of Advanced Irrigation controller subject to client approval, can connect with Centarl Control system and cabable to integrate with Smart City systems,BMS or Scada system ,Can record the real flow rate per stations, [0.03]; Supply and installation of Decoder cables 12 AWG between valves and controllers, The cables shall be pulled through 32? UPVC conduit and inspection 10" round valve box every 100 meters, as per standard specification and drawings [96.75]; Skilled Labor [122 h] | 16,305 | 16,305 | MKH2-02-002-SB-1750 | 0 | 0 | D6608 | 1 | Materia |
|  | 4 | **Single station decoder** |  | 2026-01-13 | 2026-02-19 |  |  |  |  |  |  |  |  |  |  |  |  |  |
| CON-LEG101-SB-3980 |  | Pre-qualification and Material Submittal for Steel Fence for Single station decoder | 5d | 2026-01-13 A | 2026-01-13 A | CON-LEG101-SB-3960 SS+1d | 100% | 2026-01-20 | 2026-01-25 | Skilled Labor [122 h] |  |  | MKH2-02-002-SB-1700 | 0 | 0 | D6618 | 1 | Materia |
| CON-LEG101-SB-3990 |  | Pre-qualification and Material Approval for Steel Fence for Single station decoder | 6d | 2026-01-20 A | 2026-02-19 A | CON-LEG101-SB-3980 | 100% | 2026-01-26 | 2026-02-01 | Supply and install single station decoder for valve connection to field controller including waterproof connectors and all other accessories necessary to complete the works in accordance with specifications and drawings (Decoder Single station ). [0.24]; Skilled Labor [122 h] | 1,200 | 1,200 | MKH2-02-002-SB-1750 | 0 | 0 | D6628 | 1 | Materia |
|  | 5 | **Decoder cables 12 AWG** |  | 2026-01-13 | 2026-02-19 |  |  |  |  |  |  |  |  |  |  |  |  |  |
| CON-LEG101-SB-4000 |  | Pre-qualification and Material Submittal for Steel Fence for Decoder cables 12 AWG | 5d | 2026-01-13 A | 2026-01-13 A | CON-LEG101-SB-3980 SS+1d | 100% | 2026-01-21 | 2026-01-26 | Skilled Labor [122 h] |  |  | MKH2-02-002-SB-1700 | 0 | 0 | D6638 | 1 | Materia |
| CON-LEG101-SB-4010 |  | Pre-qualification and Material Approval for Steel Fence for Decoder cables 12 AWG | 6d | 2026-01-26 A | 2026-02-19 A | CON-LEG101-SB-4000 | 100% | 2026-01-26 | 2026-02-01 | Skilled Labor [122 h] |  |  | MKH2-02-002-SB-1750 | 0 | 0 | D6648 | 1 | Materia |
|  | 1 | **Flush valve** |  | 2026-01-13 | 2026-02-19 |  |  |  |  |  |  |  |  |  |  |  |  |  |
| CON-LEG101-SB-3920 |  | Pre-qualification and Material Submittal for Steel Gate for Flush valve | 5d | 2026-01-13 A | 2026-01-13 A | CON-LEG101-SB-4000 SS | 100% | 2026-01-21 | 2026-01-26 | Skilled Labor [122 h] |  |  | MKH2-02-002-SB-1700 | 0 | 0 | D6558 | 1 | Materia |
| CON-LEG101-SB-3940 |  | Pre-qualification and Material Approval for Steel Gate for Flush valve | 6d | 2026-01-20 A | 2026-02-19 A | CON-LEG101-SB-3920 | 100% | 2026-01-26 | 2026-02-01 | Supply and installation of Electrical Solenoid Valve ( 1") inside PVC box with all accessories( pressure regulator module, manual bleeding, expedient for TSE water, in line filter, manual valve, valve box with cover, and all other accessories necessary to [0.15]; Supply and installation of Electrical Solenoid Valve ( 1.5") inside PVC box with all accessories( pressure regulator module, manual bleeding, expedient for TSE water, in line filter, manual valve, valve box with cover, and all other accessories necessary [0.09]; Supply and installation of 1" quick coupler valve inside PVC box [0.24]; "Supply and installation of a flush valve at the end of ½-inch drip irrigation lines, including all necessary accessories such as protective box and fittings, to complete the work as required and in accordance with the supervising engineer’s instructions. [1.5]; Skilled Labor [122 h] | 5,730 | 5,730 | MKH2-02-002-SB-1750 | 0 | 0 | D6578 | 1 | Materia |
|  | 9 | **Landscape Works** |  | 2025-12-11 | 2026-03-02 |  |  |  |  |  |  |  |  |  |  |  |  |  |
|  | 1 | **HDPE Pipes** |  | 2025-12-11 | 2025-12-22 |  |  |  |  |  |  |  |  |  |  |  |  |  |
| CON-LEG101-SB-4020 |  | Pre-qualification and Material Submittal for HDPE Pipes | 3d | 2025-12-11 A | 2025-12-22 A | CON-LEG101-SB-3930 SS | 100% | 2025-12-30 | 2026-01-01 | Skilled Labor [122 h] |  |  | MKH2-02-002-SB-3060 | 0 | 0 | D6658 | 1 | Materia |
| CON-LEG101-SB-4040 |  | Pre-qualification and Material Approval for HDPE Pipes | 6d | 2025-12-13 A | 2025-12-22 A | CON-LEG101-SB-4020 | 100% | 2026-01-03 | 2026-01-08 | Pipe line O.D 50 mm PN 10, in depth 0 to 1.5 m [6]; Pipe line O.D 32 mm PN 10, in depth 0 to 1.5 m [3.6]; Pipe line O.D 25 mm PN 10, in depth 0 to 1.5 m [30.9]; Skilled Labor [122 h] | 4,320 | 4,320 | MKH2-02-002-SB-3070 | 0 | 0 | D6678 | 1 | Materia |

| ID | WBS | Activity | Duration | Start | Finish | Predecessors | Complete | Planned start | Planned finish | Resources | Cost | Actual cost | USERTEXT | Weight 1 | Total Weight % | Mapping Sheet Activity ID | % A | JEDDAH 1 - Area Name |
| --- | --- | --- | --- | --- | --- | --- | --- | --- | --- | --- | --- | --- | --- | --- | --- | --- | --- | --- |
|  | 7 | **Decoder Cables** |  | 2026-01-13 | 2026-02-19 |  |  |  |  |  |  |  |  |  |  |  |  |  |
| CON-LEG101-SB-4140 |  | Pre-qualification and Material Submittal for Decoder Cables | 3d | 2026-01-13 A | 2026-01-13 A | CON-LEG101-SB-4020 | 100% | 2026-01-19 | 2026-01-21 | Skilled Labor [122 h] |  |  | MKH2-02-002-SB-3060 | 0 | 0 | D6778 | 1 | Materia |
| CON-LEG101-SB-4150 |  | Pre-qualification and Material Approval for Decoder Cables | 6d | 2026-01-20 A | 2026-02-19 A | CON-LEG101-SB-4140 | 100% | 2026-01-26 | 2026-02-01 | Skilled Labor [122 h] |  |  | MKH2-02-002-SB-3070 | 0 | 0 | D6788 | 1 | Materia |
|  | 9 | **Curbs and edging** |  | 2025-12-27 | 2026-02-16 |  |  |  |  |  |  |  |  |  |  |  |  |  |
| CON-LEG101-SB-4180 |  | Pre-qualification and Material Submittal for Curbs and edging | 3d | 2025-12-27 A | 2026-02-15 A | CON-LEG101-SB-4140 SS | 100% | 2026-01-05 | 2026-01-08 | Skilled Labor [122 h] |  |  | MKH2-02-002-SB-3060 | 0 | 0 | D6818 | 1 | Materia |
| CON-LEG101-SB-4190 |  | Pre-qualification and Material Approval for Curbs and edging | 6d | 2025-12-30 A | 2026-02-16 A | CON-LEG101-SB-4180 | 100% | 2026-01-06 | 2026-01-13 | Planting curb edge, size 500 x 250 x 100 mm. [10.2]; Skilled Labor [122 h] | 1,224 | 1,224 | MKH2-02-002-SB-3070 | 0 | 0 | D6828 | 1 | Materia |
|  | 2 | **Electrical Solenoid Valve** |  | 2026-01-13 | 2026-02-19 |  |  |  |  |  |  |  |  |  |  |  |  |  |
| CON-LEG101-SB-4030 |  | Pre-qualification and Material Submittal for Electrical Solenoid Valve | 3d | 2026-01-13 A | 2026-01-13 A | CON-LEG101-SB-4140 SS | 100% | 2026-01-19 | 2026-01-21 | Skilled Labor [122 h] |  |  | MKH2-02-002-SB-3060 | 0 | 0 | D6668 | 1 | Materia |
| CON-LEG101-SB-4050 |  | Pre-qualification and Material Approval for Electrical Solenoid Valve | 6d | 2026-01-20 A | 2026-02-19 A | CON-LEG101-SB-4030 | 100% | 2026-01-26 | 2026-02-01 | Skilled Labor [122 h] |  |  | MKH2-02-002-SB-3070 | 0 | 0 | D6688 | 1 | Materia |
|  | 3 | **Quick coupler valve** |  | 2026-01-13 | 2026-02-19 |  |  |  |  |  |  |  |  |  |  |  |  |  |
| CON-LEG101-SB-4060 |  | Pre-qualification and Material Submittal for Quick coupler valve | 3d | 2026-01-13 A | 2026-01-13 A | CON-LEG101-SB-4030 SS | 100% | 2026-01-19 | 2026-01-21 | Skilled Labor [122 h] |  |  | MKH2-02-002-SB-3060 | 0 | 0 | D6698 | 1 | Materia |
| CON-LEG101-SB-4070 |  | Pre-qualification and Material Approval for Quick coupler valve | 6d | 2026-01-20 A | 2026-02-19 A | CON-LEG101-SB-4060 | 100% | 2026-01-26 | 2026-02-01 | Skilled Labor [122 h] |  |  | MKH2-02-002-SB-3070 | 0 | 0 | D6708 | 1 | Materia |
|  | 4 | **Flush valve** |  | 2026-01-13 | 2026-02-19 |  |  |  |  |  |  |  |  |  |  |  |  |  |
| CON-LEG101-SB-4080 |  | Pre-qualification and Material Submittal for Flush valve | 3d | 2026-01-13 A | 2026-01-13 A | CON-LEG101-SB-4060 SS | 100% | 2026-01-19 | 2026-01-21 | Skilled Labor [122 h] |  |  | MKH2-02-002-SB-3060 | 0 | 0 | D6718 | 1 | Materia |
| CON-LEG101-SB-4090 |  | Pre-qualification and Material Approval for Flush valve | 6d | 2026-01-20 A | 2026-02-19 A | CON-LEG101-SB-4080 | 100% | 2026-01-26 | 2026-02-01 | Skilled Labor [122 h] |  |  | MKH2-02-002-SB-3070 | 0 | 0 | D6728 | 1 | Materia |
|  | 5 | **Irrigation controller** |  | 2026-01-13 | 2026-02-19 |  |  |  |  |  |  |  |  |  |  |  |  |  |
| CON-LEG101-SB-4100 |  | Pre-qualification and Material Submittal for Irrigation controller | 3d | 2026-01-13 A | 2026-01-13 A | CON-LEG101-SB-4080 SS | 100% | 2026-01-19 | 2026-01-21 | Skilled Labor [122 h] |  |  | MKH2-02-002-SB-3060 | 0 | 0 | D6738 | 1 | Materia |
| CON-LEG101-SB-4110 |  | Pre-qualification and Material Approval for Irrigation controller | 6d | 2026-01-20 A | 2026-02-19 A | CON-LEG101-SB-4100 | 100% | 2026-01-26 | 2026-02-01 | Skilled Labor [122 h] |  |  | MKH2-02-002-SB-3070 | 0 | 0 | D6748 | 1 | Materia |
|  | 6 | **Decoder for valve** |  | 2026-01-13 | 2026-02-19 |  |  |  |  |  |  |  |  |  |  |  |  |  |
| CON-LEG101-SB-4120 |  | Pre-qualification and Material Submittal for Decoder for valve | 3d | 2026-01-13 A | 2026-01-13 A | CON-LEG101-SB-4100 SS | 100% | 2026-01-19 | 2026-01-21 | Skilled Labor [122 h] |  |  | MKH2-02-002-SB-3060 | 0 | 0 | D6758 | 1 | Materia |
| CON-LEG101-SB-4130 |  | Pre-qualification and Material Approval for Decoder for valve | 6d | 2026-01-20 A | 2026-02-19 A | CON-LEG101-SB-4120 | 100% | 2026-01-26 | 2026-02-01 | Skilled Labor [122 h] |  |  | MKH2-02-002-SB-3070 | 0 | 0 | D6768 | 1 | Materia |
|  | 8 | **Shrubs And Ground Cover** |  | 2026-01-13 | 2026-03-02 |  |  |  |  |  |  |  |  |  |  |  |  |  |
| CON-LEG101-SB-4160 |  | Pre-qualification and Material Submittal for agricultural soil | 3d | 2026-01-13 A | 2026-01-13 A | CON-LEG101-SB-4120 SS | 100% | 2026-01-19 | 2026-01-21 | Skilled Labor [122 h] |  |  | MKH2-02-002-SB-3060 | 0 | 0 | D6798 | 1 | Materia |
| CON-LEG101-SB-4170 |  | Pre-qualification and Material Approval for agricultural soil | 6d | 2026-01-22 A | 2026-03-02 A | CON-LEG101-SB-4160 | 100% | 2026-03-29 | 2026-04-04 | Ref. SH-01, Golden daisy bush euryops pectinatus [273.45]; Skilled Labor [122 h] | 30,079.5 | 30,079.5 | MKH2-02-002-SB-3070 | 0 | 0 | D6808 | 1 | Materia |

| ID | WBS | Activity | Duration | Start | Finish | Predecessors | Complete | Planned start | Planned finish | Resources | Cost | Actual cost | USERTEXT | Weight 1 | Total Weight % | Mapping Sheet Activity ID | % A | JEDDAH 1 - Area Name |
| --- | --- | --- | --- | --- | --- | --- | --- | --- | --- | --- | --- | --- | --- | --- | --- | --- | --- | --- |
|  | 4 | **Procurement** |  | 2025-11-25 | 2027-08-28 |  |  |  |  |  |  |  |  |  |  |  |  |  |
|  | 2 | **Short Lead Item** |  | 2025-11-25 | 2027-08-28 |  |  |  |  |  |  |  |  |  |  |  |  |  |
|  | 1 | **Road Works - Civil** |  | 2025-11-25 | 2027-08-28 |  |  |  |  |  |  |  |  |  |  |  |  |  |
|  | 1 | **Steel Reinforcement** |  | 2025-12-02 | 2026-04-02 |  |  |  |  |  |  |  |  |  |  |  |  |  |
| CON-LEG101-PR-1390 |  | PO for Steel Reinforcement | 3d | 2025-12-02 A | 2025-12-02 A | CON-LEG101-SB-4270 | 100% | 2025-12-28 | 2025-12-30 | Engineer & Technician [40 h] |  |  | MKH2-02-002-PR-1930 | 0 | 0 | E1450 | 1 | Short |
| CON-LEG101-PR-1410 |  | Material Delivery for Steel Reinforcement | 21d | 2025-12-16 A | 2026-04-02 A | CON-LEG101-PR-1390 | 100% | 2025-12-31 | 2026-01-24 | Removal of chain link fence [431]; Removal of concrete fence [406]; Removal of Electricity distribution panel [0.2]; Demolition of existing structures [500]; "Reinforced Steel Grade 60 [20]; Labor [400 h] | 167,565 | 167,565 | MKH2-02-002-PR-1950 | 0 | 0 | E1470 | 1 | Short |
|  | 2 | **Ready Mixed Concrete** |  | 2025-12-17 | 2026-03-31 |  |  |  |  |  |  |  |  |  |  |  |  |  |
| CON-LEG101-PR-1420 |  | PO for Ready Mixed Concrete | 5d | 2025-12-17 A | 2025-12-17 A | CON-LEG101-SB-4290 | 100% | 2025-12-25 | 2025-12-31 | Engineer & Technician [40 h] |  |  | MKH2-02-002-PR-1960 | 0 | 0 | E1480 | 1 | Short |
| CON-LEG101-PR-1430 |  | Material Delivery for Ready Mixed Concrete | 21d | 2025-12-21 A | 2026-03-31 A | CON-LEG101-PR-1410, CON-LEG101-PR-1420 | 100% | 2026-01-04 | 2026-01-28 | "Lean concrete [62.4]; Isolated footings [128.8]; Strip footings [213.8]; Grade beams [186.6]; Columns [45]; Retaining Walls [233.2]; "Lean concrete [1.6]; "Reinforced concrete Piles [28.8]; "Reinforced concrete of Bridge Sub-structure [27]; "Reinforced concrete Bridge Superstructure [42.6]; "Protective Coating for Concrete Surfaces [260.43]; Labor [400 h] | 1,601,570.1 | 1,601,570.1 | MKH2-02-002-PR-1970 | 0 | 0 | E1490 | 1 | Short |
|  | 4 | **Backfilling Materials** |  | 2025-11-25 | 2026-03-31 |  |  |  |  |  |  |  |  |  |  |  |  |  |
| CON-LEG101-PR-3990 |  | PO for Backfilling Materials | 5d | 2025-11-25 A | 2025-11-25 A | CON-LEG101-MS-1090 SS, CON-LEG101-MB-1160, CON-LEG101-PR-1420 | 100% | 2026-01-06 | 2026-01-11 | Engineer & Technician [40 h] |  |  | MKH2-02-002-PR-1930 | 0 | 0 | E1450 | 1 | Short |
| CON-LEG101-PR-4000 |  | Material Delivery for Backfilling Materials | 21d | 2025-12-01 A | 2026-03-31 A | CON-LEG101-PR-3990, CON-LEG101-PR-1430 SS+7d, CON-LEG101-MS-1100 | 100% | 2026-02-02 | 2026-02-26 | Excavation for Roadway, fences and bridge, cuttings including dump locations (all types of soil) [29412]; Parcrels Excavation for cuttings (all types of soil) [24711]; Embankments to the roads , fences and bridge. [20486]; Embankments to the parcels [18929]; Subgrade [7461]; Labor [400 h] | 1,529,448 | 1,529,448 |  |  |  |  | 1 | Short |
|  | 5 | **Aggregate Base Course** |  | 2025-12-20 | 2026-05-21 |  |  |  |  |  |  |  |  |  |  |  |  |  |
| CON-LEG101-PR-1470 |  | PO for Aggregate Base Course | 5d | 2025-12-20 A | 2025-12-20 A | CON-LEG101-SB-1030, CON-LEG101-PR-3990 | 100% | 2026-01-08 | 2026-01-14 | Engineer & Technician [40 h] |  |  | MKH2-02-002-PR-2010 | 0 | 0 | E1530 | 1 | Short |
| CON-LEG101-PR-1490 |  | Material Delivery for Aggregate Base Course | 21d | 2026-01-15 A | 2026-05-21 A | CON-LEG101-PR-1470, CON-LEG101-PR-2570, CON-LEG101-PR-2560 | 100% | 2026-04-16 | 2026-05-10 | Labor [400 h]; Aggregate base course [4974 M3] | 298,440 | 298,440 | MKH2-02-002-PR-2030 | 0 | 0 | E1550 | 1 | Short |
|  | 7 | **Precast Concrete Kerb** |  | 2026-02-01 | 2026-07-23 |  |  |  |  |  |  |  |  |  |  |  |  |  |
| CON-LEG101-PR-1520 |  | PO for Precast Concrete Kerb | 5d | 2026-02-01 A | 2026-02-02 A | CON-LEG101-SB-1110 | 100% | 2026-03-04 | 2026-03-09 | Engineer & Technician [40 h] |  |  | MKH2-02-002-PR-2080 | 0 | 0 | E1600 | 1 | Short |
| CON-LEG101-PR-1540 |  | Material Delivery for Precast Concrete Kerb | 21d | 2026-05-02 A | 2026-07-23 A | CON-LEG101-PR-1520, CON-LEG101-PR-1510, CON-LEG101-LR-7980 | 100% | 2027-01-28 | 2027-02-27 | Precast Concrete Kerb, Type K1-A [4024]; Precast Concrete Kerb, Type K4 [3159]; Precast Concrete Kerb, Type K1-B [1656]; Precast Concrete Kerb, Type K NEW (Flushed Kerb) [3159]; Labor [400 h] | 676,820 | 676,820 | MKH2-02-002-PR-2100 | 0 | 0 | E1620 | 1 | Short |
|  | 8 | **Interlocking Block Pavers** |  | 2026-06-11 | 2026-07-30 |  |  |  |  |  |  |  |  |  |  |  |  |  |
| CON-LEG101-PR-1550 |  | PO for Interlocking Block Pavers | 5d | 2026-06-11 A | 2026-06-11 A | CON-LEG101-SB-1150 | 100% | 2026-06-10 | 2026-06-15 | Engineer & Technician [40 h] |  |  | MKH2-02-002-PR-2110 | 0 | 0 | E1630 | 1 | Short |
| CON-LEG101-PR-1570 |  | Material Delivery for Interlocking Block Pavers | 21d | 2026-06-13 A | 2026-07-30 A | CON-LEG101-PR-1550, CON-LEG101-PR-1540 SS | 100% | 2027-02-18 | 2027-03-16 | Interlocking block pavers for sidewalk/footpath [7724]; Interlocking block pavers for roads/on-street parking [3857]; Labor [400 h] | 849,240 | 849,240 | MKH2-02-002-PR-2130 | 0 | 0 | E1650 | 1 | Short |
|  | 3 | **Water Proofing** |  | 2026-01-03 | 2026-03-05 |  |  |  |  |  |  |  |  |  |  |  |  |  |
| CON-LEG101-PR-1460 |  | Material Delivery for Water Proofing | 21d | 2026-01-03 A | 2026-03-05 A | CON-LEG101-PR-1440, CON-LEG101-PR-1410, CON-LEG101-PR-1430 | 100% | 2026-02-19 | 2026-03-17 | "Supply and install cold applied bituminous paint waterproofing for R.C foundation and, as per drawings and specs section: [3906]; Membrane waterproofing for concert in touch with soil and membrane waterproofing for bridge slab (under asphalt ) as per details drawing ST-DWG-6103, including protection board around foundation sides. The cost includes preparation work and cleaning the s [100]; Labor [400 h] | 70,590 | 70,590 | MKH2-02-002-PR-2000 | 0 | 0 | E1520 | 1 | Short |
| CON-LEG101-PR-1440 |  | PO for Water Proofing | 5d | 2026-01-03 A | 2026-01-03 A | CON-LEG101-SB-4310 | 100% | 2026-01-12 | 2026-01-18 | Engineer & Technician [40 h] |  |  | MKH2-02-002-PR-1980 | 0 | 0 | E1500 | 1 | Short |

| ID | WBS | Activity | Duration | Start | Finish | Predecessors | Complete | Remaining | Planned start | Planned finish | Total float | Free float | Resources | Cost | Actual cost | USERTEXT | Weight 1 | Total Weight % | Mapping Sheet Activity ID | % A | JEDDAH 1 - Area Name |
| --- | --- | --- | --- | --- | --- | --- | --- | --- | --- | --- | --- | --- | --- | --- | --- | --- | --- | --- | --- | --- | --- |
|  | 10 | **Handicap ramp** |  | 2026-04-02 | 2026-06-10 |  |  |  |  |  |  |  |  |  |  |  |  |  |  |  |  |
| CON-LEG101-PR-2580 |  | PO for Handicap ramp | 5d | 2026-04-02 A | 2026-04-02 A | CON-LEG101-SB-2370, CON-LEG101-PR-1440 | 100% |  | 2026-04-19 | 2026-04-23 |  |  | Engineer & Technician [40 h] |  |  | MKH2-02-002-PR-2140 | 0 | 0 | E2880 | 1 | Short |
| CON-LEG101-PR-2600 |  | Material Delivery for Handicap ramp | 15d | 2026-06-10 A | 2026-06-10 A | CON-LEG101-PR-2580, CON-LEG101-PR-1630 SS, CON-LEG101-PR-1600 SS | 100% |  | 2027-06-05 | 2027-06-22 |  |  | Handicap ramp [23.2]; Labor [400 h] | 34,800 | 34,800 | MKH2-02-002-PR-2160 | 0 | 0 | E2900 | 1 | Short |
|  | 9 | **Pavement Markings** |  | 2026-04-02 | 2027-08-28 |  |  |  |  |  |  |  |  |  |  |  |  |  |  |  |  |
| CON-LEG101-PR-1580 |  | PO for Pavement Markings | 5d | 2026-04-02 A | 2026-04-02 A | CON-LEG101-SB-1190 | 100% |  | 2026-04-04 | 2026-04-08 |  |  | Engineer & Technician [40 h] |  |  | MKH2-02-002-PR-2140 | 0 | 0 | E1660 | 1 | Short |
| CON-LEG101-PR-1600 |  | Material Delivery for Pavement Markings | 15d | 2027-08-05 | 2027-08-23 | CON-LEG101-PR-1580, CON-LEG101-PR-1510 SS+7d, CON-LEG101-PR-1530 SS |  |  |  |  | -75.65d | 0d | Retroreflective Plastic Cones [3.6]; Retroreflective Thermoplastic white paint [580]; Retroreflective Thermoplastic yellow paint including Rumble strips [176]; Labor [400 h] | 35,820 |  | MKH2-02-002-PR-2160 | 0 | 0 | E1680 |  | Short |
| CON-LEG101-PR-2070 |  | Staging Time for Pavement Markings | 4d | 2027-08-23 | 2027-08-28 | CON-LEG101-PR-1600, CON-LEG101-PR-2600 |  |  |  |  | -75.65d | 0d | Engineer & Technician [64 h] |  |  |  |  |  |  |  | Short |
|  | 6 | **Bituminous Base & Wearing Course** |  | 2025-12-20 | 2027-08-10 |  |  |  |  |  |  |  |  |  |  |  |  |  |  |  |  |
| CON-LEG101-PR-1500 |  | PO for Bituminous Base & Wearing Course | 5d | 2025-12-20 A | 2025-12-20 A | CON-LEG101-SB-1070 | 100% |  | 2026-01-13 | 2026-01-19 |  |  | Engineer & Technician [40 h] |  |  | MKH2-02-002-PR-2040 | 0 | 0 | E1560 | 1 | Short |
| CON-LEG101-PR-1510 |  | Material Delivery for Bituminous Base Course | 21d | 2026-05-19 A | 2026-08-11 A | CON-LEG101-PR-1490, CON-LEG101-PR-1500 | 100% |  | 2026-05-23 | 2026-06-21 |  |  | Bituminous base course (Grading I - Class A), including Prime Coat (MC1) according to drawings [1658]; Labor [400 h] | 961,640 | 961,640 | MKH2-02-002-PR-2050 | 0 | 0 | E1570 | 1 | Short |
| CON-LEG101-PR-1530 |  | Material Delivery for Wearing Course | 21d | 2026-09-29 A | 2027-08-10 | CON-LEG101-PR-1510, CON-LEG101-LR-6180 | 80% | 4.2d | 2027-07-06 | 2027-07-31 | -75.65d | 0d | Bituminous concrete wearing course, (Grading I - Class A), including tack coat (RC2) according to drawings. [1184]; Labor [410 h] | 710,400 | 568,320 |  |  |  |  |  | Short |
|  | 1 | **Long Lead Item** |  | 2025-12-09 | 2027-06-26 |  |  |  |  |  |  |  |  |  |  |  |  |  |  |  |  |
|  | 12 | **Sanitary Sewerage** |  | 2025-12-17 | 2026-04-13 |  |  |  |  |  |  |  |  |  |  |  |  |  |  |  |  |
|  | 1 | **GRP Pipes** |  | 2025-12-17 | 2026-04-13 |  |  |  |  |  |  |  |  |  |  |  |  |  |  |  |  |
| CON-LEG101-PR-1700 |  | PO for GRP Pipes for Sewer network | 3d | 2025-12-17 A | 2025-12-17 A | CON-LEG101-SB-1470 | 100% |  | 2025-12-30 | 2026-01-03 |  |  | Engineer & Technician [60 h] |  |  | MKH2-02-002-PR-2290 | 0 | 0 | E1780 | 1 | Long |
| CON-LEG101-PR-1710 |  | Material Fabrication for GRP Pipes for Sewer network | 75d | 2025-12-18 A | 2026-03-15 A | CON-LEG101-PR-1700 | 100% |  | 2026-01-03 | 2026-04-06 |  |  | Labor [400 h] |  |  | MKH2-02-002-PR-2300 | 0 | 0 | E1790 | 1 | Long |
| CON-LEG101-PR-1720 |  | Material Delivery for GRP Pipes for Sewer network | 15d | 2025-12-29 A | 2026-04-12 A | CON-LEG101-PR-1710 | 100% |  | 2026-03-18 | 2026-04-09 |  |  | Sanitary Sewerage 450mm Depth: 3.51m - 4.50m [16]; Sanitary Sewerage 450mm Depth exceeds 4.50m [4]; Sanitary Sewerage - Concrete encasement pipe dia 200 mm [200.8]; Sanitary Sewerage Concrete encasement pipe dia 350 mm [5]; Labor [535 h]; Sanitary Sewerage 150mm Diameter Depth: 0.00 m - 1.50 m. [4]; Sanitary Sewerage 150mm Diameter Depth: 1.51m - 2.50m [40]; Sanitary Sewerage 150mm Diameter Depth exceeds 2.50m [4]; Sanitary Sewerage 200mm Depth: 0.00 m - 1.50 m. [258.2]; Sanitary Sewerage 200mm Depth: 1.51m - 2.50m [437.2]; Sanitary Sewerage 200mm Depth: 2.51m - 3.50m [217.6]; Sanitary Sewerage 200mm Depth exceeds 3.50m [4]; Sanitary Sewerage 300mm Depth: 0.00 m - 1.50 m. [4]; Sanitary Sewerage 300mm Depth: 1.51m - 2.50m [46.8]; Sanitary Sewerage 300mm Depth: 2.51m - 3.50m [48.8]; Sanitary Sewerage 300mm Depth exceeds 3.50m [4]; Sanitary Sewerage 350mm Depth: 0.00 m - 1.50 m. [4]; Sanitary Sewerage 350mm Depth: 1.51m - 2.50m [45.4]; Sanitary Sewerage 350mm Depth: 2.51m - 3.50m [17.8]; Sanitary Sewerage 350mm Depth exceeds 3.50m [4]; Sanitary Sewerage 450mm Depth: 0.00 m - 1.50 m. [4]; Sanitary Sewerage 450mm Depth: 1.51m - 2.50m [96]; Sanitary Sewerage 450mm Depth: 2.51m - 3.50m [87.6] | 705,900 | 705,900 | MKH2-02-002-PR-2310 | 0.00625680927491391 | 0.625680927491391 | E1800 | 1 | Long |
| CON-LEG101-PR-2560 |  | Staging Time for GRP Pipes for Sewer network | 10d | 2025-12-30 A | 2026-04-13 A | CON-LEG101-PR-1720 | 100% |  | 2026-04-05 | 2026-04-16 |  |  | Engineer & Technician [128 h] |  |  |  |  |  |  | 1 | Long |
|  | 2 | **Fiberglass Manholes** |  | 2025-12-29 | 2026-04-04 |  |  |  |  |  |  |  |  |  |  |  |  |  |  |  |  |
| CON-LEG101-PR-1730 |  | PO for Fiberglass Manholes for Sewer network | 5d | 2025-12-29 A | 2025-12-30 A | CON-LEG101-SB-1510, CON-LEG101-PR-1700 | 100% |  | 2026-01-14 | 2026-01-20 |  |  | Engineer & Technician [80 h] |  |  | MKH2-02-002-PR-2320 | 0 | 0 | E1810 | 1 | Long |
| CON-LEG101-PR-1740 |  | Material Fabrication for Fiberglass Manholes for Sewer network | 75d | 2025-12-31 A | 2026-01-28 A | CON-LEG101-PR-1730 | 100% |  | 2026-01-20 | 2026-04-23 |  |  | Labor [400 h] |  |  | MKH2-02-002-PR-2330 | 0 | 0 | E1820 | 1 | Long |
| CON-LEG101-PR-1750 |  | Material Delivery for Fiberglass Manholes for Sewer network | 15d | 2026-01-20 A | 2026-04-02 A | CON-LEG101-PR-1740 | 100% |  | 2026-03-10 | 2026-04-01 |  |  | Sanitary Sewerage MH depth 0.00 m - 1.50 m. [6]; Sanitary Sewerage MH depth 1.51 - 2.50 m [9]; Sanitary Sewerage MH depth 1.51 - 2.50 m with back drop [0.8]; Sanitary Sewerage MH depth 2.51 - 3.50 m [7.4]; Sanitary Sewerage MH depth 2.51 - 3.50 m with back drop [0.2]; Sanitary Sewerage MH depth 3.51 - 4.50 m [0.6]; Sanitary Sewerage MH depth exceeds 3.50 m with back drop [0.2]; Sanitary Sewerage MH depth exceeds 4.50 m [0.2]; Labor [535 h] | 431,200 | 431,200 | MKH2-02-002-PR-2340 | 0.00625680927491391 | 0.625680927491391 | E1830 | 1 | Long |
| CON-LEG101-PR-2570 |  | Staging Time for Fiberglass Manholes for Sewer network | 10d | 2026-01-20 A | 2026-04-04 A | CON-LEG101-PR-1750 | 100% |  | 2026-04-01 | 2026-04-13 |  |  | Engineer & Technician [64 h] |  |  |  |  |  |  | 1 | Long |
|  | 3 | **TSE Network** |  | 2026-01-01 | 2026-04-23 |  |  |  |  |  |  |  |  |  |  |  |  |  |  |  |  |
|  | 3 | **HDPE Pipe (PN 16)** |  | 2026-01-01 | 2026-04-01 |  |  |  |  |  |  |  |  |  |  |  |  |  |  |  |  |
| CON-LEG101-PR-1670 |  | PO for HDPE Pipe (PN 16) for TSE | 5d | 2026-01-01 A | 2026-01-01 A | CON-LEG101-SB-1430 | 100% |  | 2026-01-07 | 2026-01-12 |  |  | Engineer & Technician [80 h] |  |  | MKH2-02-002-PR-2260 | 0 | 0 | E1750 | 1 | Long |
| CON-LEG101-PR-1680 |  | Material Fabrication for HDPE Pipe (PN 16) for TSE | 75d | 2026-01-03 A | 2026-03-25 A | CON-LEG101-PR-1670 | 100% |  | 2026-01-13 | 2026-04-15 |  |  | Labor [400 h] |  |  | MKH2-02-002-PR-2270 | 0 | 0 | E1760 | 1 | Long |
| CON-LEG101-PR-1690 |  | Material Delivery for HDPE Pipe (PN 16) for TSE | 15d | 2026-01-04 A | 2026-03-31 A | CON-LEG101-PR-2560, CON-LEG101-PR-1680 | 100% |  | 2026-04-05 | 2026-04-22 |  |  | Piping TSE Network - 200mm Diameter Depth: 2.51m - 3.50m [11.8]; Piping TSE Network - 200mm Diameter Depth exceeds 3.50m [4]; Labor [535 h]; Piping TSE Network - 110mm Diameter Depth: 0.00 m - 1.50 m. [103]; Piping TSE Network - 110mm Diameter Depth: 1.51m - 2.50m [151.4]; Piping TSE Network - 110mm Diameter Depth exceeds 2.50m [4]; Piping TSE Network - 160mm Diameter Depth: 0.00 m - 1.50 m. [109]; Piping TSE Network - 160mm Diameter Depth: 1.51m - 2.50m [323.2]; Piping TSE Network - 160mm Diameter Depth exceeds 2.50m [4]; Piping TSE Network - 200mm Diameter Depth: 0.00 m - 1.50 m. [309]; Piping TSE Network - 200mm Diameter Depth: 1.51m - 2.50m [595.6]; Piping TSE Network - 250mm Diameter Depth: 0.00 m - 1.50 m. [4]; Piping TSE Network - 250mm Diameter Depth: 1.51m - 2.50m [41.4]; Piping TSE Network - 250mm Diameter Depth exceeds 2.50m [4]; Piping TSE Network - 315mm Diameter Depth: 0.00 m - 1.50 m. [132.2]; Piping TSE Network - 315mm Diameter Depth: 1.51m - 2.50m [81.2]; Piping TSE Network - 315mm Diameter Depth: 2.51m - 3.50m [3]; Piping TSE Network - Concrete encasement, pipe dia 110 mm [13.6]; Piping TSE Network - 315mm Diameter Depth exceeds 3.50m [4] | 631,650 | 631,650 | MKH2-02-002-PR-2280 | 0.00287792953136441 | 0.287792953136441 | E1770 | 1 | Long |
| CON-LEG101-PR-2590 |  | Staging Time for HDPE Pipe (PN 16) for TSE | 10d | 2026-01-05 A | 2026-04-01 A | CON-LEG101-PR-1690 | 100% |  | 2026-04-22 | 2026-05-04 |  |  | Engineer & Technician [64 h] |  |  |  |  |  |  | 1 | Long |

| ID | WBS | Activity | Duration | Start | Finish | Predecessors | Complete | Planned start | Planned finish | Resources | Cost | Actual cost | USERTEXT | Weight 1 | Total Weight % | Mapping Sheet Activity ID | % A | JEDDAH 1 - Area Name |
| --- | --- | --- | --- | --- | --- | --- | --- | --- | --- | --- | --- | --- | --- | --- | --- | --- | --- | --- |
|  | 1 | **Valves** |  | 2026-01-28 | 2026-03-29 |  |  |  |  |  |  |  |  |  |  |  |  |  |
| CON-LEG101-PR-1360 |  | PO for Valves for TSE | 5d | 2026-01-28 A | 2026-01-28 A | CON-LEG101-SB-2070 | 100% | 2026-02-08 | 2026-02-12 | Engineer & Technician [80 h] |  |  | MKH2-02-002-PR-1480 | 0 | 0 | E1420 | 1 | Long |
| CON-LEG101-PR-1370 |  | Material Fabrication for Valves for TSE | 90d | 2026-01-29 A | 2026-02-02 A | CON-LEG101-PR-1360 | 100% | 2026-02-14 | 2026-06-08 | Labor [400 h] |  |  | MKH2-02-002-PR-1490 | 0 | 0 | E1430 | 1 | Long |
| CON-LEG101-PR-1380 |  | Material Delivery for Valves for TSE | 15d | 2026-02-03 A | 2026-03-28 A | CON-LEG101-PR-2590, CON-LEG101-PR-1370 | 100% | 2026-06-09 | 2026-06-25 | Piping TSE Network - Gate valves, on pipe with diameter 250 mm [0.2]; Piping TSE Network - Butterfly valves, on pipe with diameter 315 mm [0.8]; Labor [535 h]; Piping TSE Network - Gate valves, on pipe with diameter 110 mm [17.6]; Piping TSE Network - Gate valves, on pipe with diameter 160 mm [1.8]; Piping TSE Network - Gate valves, on pipe with diameter 200 mm [3.8]; Piping TSE Network - Wash out valve, on pipes with diameter 110-400 mm [2.2]; Piping TSE Network - Air valve complete with gate valves, on pipes with diameter less than 315 mm. [2]; Piping TSE Network - On 315-400 mm diameter pipeline [0.8]; Piping TSE Network - Wash out valve chamber; on 110-400 mm diameter pipeline [2.2]; Piping TSE Network - Air valve chamber; on less than 315 mm diameter pipeline [2] | 370,700 | 370,700 | MKH2-02-002-PR-1500 | 0.00287792953136441 | 0.287792953136441 | E1440 | 1 | Long |
| CON-LEG101-PR-1970 |  | Staging Time for Valves for TSE | 10d | 2026-02-04 A | 2026-03-29 A | CON-LEG101-PR-1380, CON-LEG101-PR-1490 | 100% | 2026-06-27 | 2026-07-07 | Engineer & Technician [64 h] |  |  | MKH2-02-002-PR-4800 | 0 | 0 | E2270 | 1 | Long |
|  | 2 | **Fire Hydrant** |  | 2026-01-28 | 2026-04-23 |  |  |  |  |  |  |  |  |  |  |  |  |  |
| CON-LEG101-PR-2440 |  | PO for Fire Hydrant | 3d | 2026-01-28 A | 2026-01-28 A | CON-LEG101-SB-2110 | 100% | 2026-02-08 | 2026-02-10 | Engineer & Technician [80 h] |  |  | MKH2-02-002-PR-1480 | 0 | 0 | E2740 | 1 | Long |
| CON-LEG101-PR-2450 |  | Material Fabrication for Fire Hydrant | 120d | 2026-01-29 A | 2026-02-02 A | CON-LEG101-PR-2440, CON-LEG101-PR-4000 | 100% | 2026-02-28 | 2026-07-27 | Labor [400 h] |  |  | MKH2-02-002-PR-1490 | 0 | 0 | E2750 | 1 | Long |
| CON-LEG101-PR-2460 |  | Material Delivery for Fire Hydrant | 20d | 2026-02-03 A | 2026-04-22 A | CON-LEG101-PR-1970, CON-LEG101-PR-2450, CON-LEG101-PR-1510 | 100% | 2026-07-27 | 2026-08-19 | Piping TSE Network - 3-outlet fire hydrant (2 x 2.5 inch and 1 x 4.5 inch) in the form of a separate dry vacuum cylinder [17.8]; Labor [535 h] | 160,200 | 160,200 | MKH2-02-002-PR-1500 | 0.00287792953136441 | 0.287792953136441 | E2760 | 1 | Long |
| CON-LEG101-PR-2470 |  | Staging Time for Fire Hydrant | 10d | 2026-02-04 A | 2026-04-23 A | CON-LEG101-PR-2460 | 100% | 2026-08-19 | 2026-08-31 | Engineer & Technician [64 h] |  |  | MKH2-02-002-PR-4800 | 0 | 0 | E2770 | 1 | Long |
|  | 5 | **Stormwater Utilities** |  | 2025-12-09 | 2026-04-13 |  |  |  |  |  |  |  |  |  |  |  |  |  |
|  | 2 | **GRP Pipes** |  | 2025-12-09 | 2026-04-13 |  |  |  |  |  |  |  |  |  |  |  |  |  |
| CON-LEG101-PR-1790 |  | PO for GRP Pipes for Storm network | 3d | 2025-12-09 A | 2025-12-09 A | CON-LEG101-SB-1590 | 100% | 2025-12-31 | 2026-01-03 | Engineer & Technician [80 h] |  |  | MKH2-02-002-PR-2380 | 0 | 0 | E1870 | 1 | Long |
| CON-LEG101-PR-1800 |  | Material Fabrication for GRP Pipes for Storm network | 75d | 2025-12-10 A | 2026-03-12 A | CON-LEG101-PR-1790 | 100% | 2026-01-04 | 2026-04-06 | Labor [400 h] |  |  | MKH2-02-002-PR-2390 | 0 | 0 | E1880 | 1 | Long |
| CON-LEG101-PR-1810 |  | Material Delivery for GRP Pipes for Storm network | 14d | 2025-12-16 A | 2026-04-12 A | CON-LEG101-PR-1800 | 100% | 2026-03-25 | 2026-04-11 | Labor [535 h]; Stormwater Utilities - GRP Pipes - 400 mm Diameter Depth: 0.00 m - 1.50 m. [4]; Stormwater Utilities - GRP Pipes - 400 mm Depth: 1.51m - 2.50m [84]; Stormwater Utilities - GRP Pipes - 400 mm Depth exceeds 2.50m [4]; Stormwater Utilities - GRP Pipes - 500 mm Depth: 0.00 m - 1.50 m. [4]; Stormwater Utilities - GRP Pipes - 500 mm Depth: 1.51m - 2.50m [551]; Stormwater Utilities - GRP Pipes - 500 mm Depth: 2.51m - 3.50m [230]; Stormwater Utilities - GRP Pipes - 500 mm Depth: 3.51m - 4.50m [36.6]; Stormwater Utilities - GRP Pipes - 500 mm Depth exceeds 4.50m [4]; Stormwater Utilities - GRP Pipes - 600 mm Depth: 1.51m - 2.50m [12.6]; Stormwater Utilities - GRP Pipes - 600 mm Depth: 2.51m - 3.50m [116.8]; Stormwater Utilities - GRP Pipes - 600 mm Depth: 3.51m - 4.50m [62.2]; Stormwater Utilities - GRP Pipes - 600 mm Depth exceeds 4.50m [4]; Stormwater Utilities - GRP Pipes - 700 mm Depth: 1.51m - 2.50m [4]; Stormwater Utilities - GRP Pipes - 700 mm Depth: 2.51m - 3.50m [14.4]; Stormwater Utilities - GRP Pipes - 700 mm Depth exceeds 3.50m [4]; Stormwater Utilities - GRP Pipes - 800 mm Depth: 1.51m - 2.50m [8.6]; Stormwater Utilities - GRP Pipes - 800 mm Depth: 2.51m - 3.50m [39.6]; Stormwater Utilities - GRP Pipes - 800 mm Depth exceeds 3.50m [4] | 943,530 | 943,530 | MKH2-02-002-PR-2400 | 0.00908283008018919 | 0.908283008018919 | E1890 | 1 | Long |
| CON-LEG101-PR-2100 |  | Staging Time for GRP Pipes for Storm network | 10d | 2025-12-20 A | 2026-04-13 A | CON-LEG101-PR-1810 | 100% | 2026-01-20 | 2026-02-01 | Engineer & Technician [128 h] |  |  |  |  |  |  | 1 | Long |
|  | 1 | **UPVC Pipes** |  | 2026-01-28 | 2026-04-02 |  |  |  |  |  |  |  |  |  |  |  |  |  |
| CON-LEG101-PR-1760 |  | PO for UPVC Pipes | 3d | 2026-01-28 A | 2026-01-28 A | CON-LEG101-SB-1550 | 100% | 2026-02-08 | 2026-02-10 | Engineer & Technician [80 h] |  |  | MKH2-02-002-PR-2350 | 0 | 0 | E1840 | 1 | Long |
| CON-LEG101-PR-1770 |  | Material Fabrication for UPVC Pipes | 75d | 2026-01-29 A | 2026-03-29 A | CON-LEG101-PR-1760 | 100% | 2026-02-11 | 2026-05-14 | Labor [400 h] |  |  | MKH2-02-002-PR-2360 | 0 | 0 | E1850 | 1 | Long |
| CON-LEG101-PR-1780 |  | Material Delivery for UPVC Pipes | 15d | 2026-01-31 A | 2026-04-01 A | CON-LEG101-PR-1770 | 100% | 2026-05-16 | 2026-06-06 | Labor [535 h]; Stormwater Utilities - PVC Pipes - 300 mm Diameter Depth: 0.00 m - 1.50 m. [209]; Stormwater Utilities - PVC Pipes - 300 mm Diameter Depth: 1.51m - 2.50m [306.2]; Stormwater Utilities - PVC Pipes - 300 mm Diameter Depth exceeds 2.50m [4]; Stormwater Utilities - PVC Pipes - 400 mm Diameter Depth: 0.00 m - 1.50 m. [1]; Stormwater Utilities - PVC Pipes - 500 mm Depth: 0.00 m - 1.50 m. [4]; Stormwater Utilities - PVC Pipes - 400 mm Diameter Depth: 1.51m - 2.50m [1.6]; Stormwater Utilities - PVC Pipes - 400 mm Diameter Depth exceeds 2.50m [1]; Stormwater Utilities - PVC Pipes - 500 mm Depth: 1.51m - 2.50m [94.6]; Stormwater Utilities - PVC Pipes - 500 mm Depth exceeds 2.50m [4] | 303,902 | 303,902 | MKH2-02-002-PR-2370 | 0.00908283008018919 | 0.908283008018919 | E1860 | 1 | Long |
| CON-LEG101-PR-2110 |  | Staging Time for UPVC Pipes | 10d | 2026-02-01 A | 2026-04-02 A | CON-LEG101-PR-1780 | 100% | 2026-06-07 | 2026-06-17 | Engineer & Technician [128 h] |  |  |  |  |  |  | 1 | Long |
|  | 6 | **Inlet Manholes** |  | 2025-12-17 | 2026-04-04 |  |  |  |  |  |  |  |  |  |  |  |  |  |
| CON-LEG101-PR-1820 |  | PO for Inlet Manholes for Storm network | 5d | 2025-12-17 A | 2025-12-17 A | CON-LEG101-SB-3330 | 100% | 2026-01-03 | 2026-01-08 | Engineer & Technician [80 h] |  |  | MKH2-02-002-PR-2500 | 0 | 0 | E1900 | 1 | Long |
| CON-LEG101-PR-1830 |  | Material Fabrication for Inlet Manholes for Storm network | 70d | 2025-12-18 A | 2026-01-28 A | CON-LEG101-PR-1820 | 100% | 2026-01-06 | 2026-04-04 | Labor [400 h] |  |  | MKH2-02-002-PR-2510 | 0 | 0 | E1910 | 1 | Long |
| CON-LEG101-PR-1840 |  | Material Delivery for Inlet Manholes for Storm network | 15d | 2025-12-28 A | 2026-04-02 A | CON-LEG101-PR-1830 | 100% | 2026-03-18 | 2026-04-08 | Stormwater Utilities - (ring 1200 mm internal dia.) MH depth 1.51 - 2.50m [13.4]; Stormwater Utilities - (ring 1200 mm internal dia.) MH depth 2.51 - 3.50m [6.8]; Stormwater Utilities - (ring 1200 mm internal dia.) MH depth 3.51 - 4.50m [3.8]; Stormwater Utilities - (ring 1200 mm internal dia.) MH depth exceeds 4.50m [0.2]; Stormwater Utilities - (ring 1500 mm internal dia.) MH depth exceeds 3.50m [0.2]; Labor [535 h]; Stormwater Utilities - (ring 1500 mm internal dia.) MH depth 1.51 - 2.50m [0.4]; Stormwater Utilities - (ring 1500 mm internal dia.) MH depth 2.51 - 3.50m [1.2] | 489,100 | 489,100 | MKH2-02-002-PR-2520 | 0.00908283008018919 | 0.908283008018919 | E1920 | 1 | Long |
| CON-LEG101-PR-1980 |  | Staging Time for Inlet Manholes for Storm network | 10d | 2025-12-30 A | 2026-04-04 A | CON-LEG101-PR-1840 | 100% | 2026-02-10 | 2026-02-23 | Engineer & Technician [128 h] |  |  | MKH2-02-002-PR-4850 | 0 | 0 | E2280 | 1 | Long |

| ID | WBS | Activity | Duration | Start | Finish | Predecessors | Complete | Remaining | Planned start | Planned finish | Total float | Free float | Resources | Cost | Actual cost | USERTEXT | Weight 1 | Total Weight % | Mapping Sheet Activity ID | % A | JEDDAH 1 - Area Name |
| --- | --- | --- | --- | --- | --- | --- | --- | --- | --- | --- | --- | --- | --- | --- | --- | --- | --- | --- | --- | --- | --- |
|  | 7 | **Concrete chambers** |  | 2025-12-23 | 2026-04-09 |  |  |  |  |  |  |  |  |  |  |  |  |  |  |  |  |
| CON-LEG101-PR-1850 |  | PO for Concrete chambers | 3d | 2025-12-23 A | 2025-12-23 A | CON-LEG101-PR-1820, CON-LEG101-SB-1630 | 100% |  | 2026-01-17 | 2026-01-20 |  |  | Engineer & Technician [80 h] |  |  | MKH2-02-002-PR-2530 | 0 | 0 | E1930 | 1 | Long |
| CON-LEG101-PR-1860 |  | Material Fabrication for Concrete chambers | 75d | 2025-12-27 A | 2026-04-02 A | CON-LEG101-PR-1830 SS+15d, CON-LEG101-PR-1850 | 100% |  | 2026-01-08 | 2026-04-12 |  |  | Labor [420 h] |  |  | MKH2-02-002-PR-2540 | 0 | 0 | E1940 | 1 | Long |
| CON-LEG101-PR-1870 |  | Material Delivery for Concrete chambers | 20d | 2026-01-31 A | 2026-04-08 A | CON-LEG101-PR-1860 | 100% |  | 2026-04-02 | 2026-04-25 |  |  | Single Catch basin as per drawings [19.8]; Double Catch basin as per drawings [4]; Curb inlet catch basin [12.2]; Outfall structure as per drawings [0.2]; Labor [535 h] | 346,600 | 346,600 | MKH2-02-002-PR-2550 | 0.00908283008018919 | 0.908283008018919 | E1950 | 1 | Long |
| CON-LEG101-PR-1990 |  | Staging Time for Concrete chambers | 20d | 2026-02-01 A | 2026-04-09 A | CON-LEG101-PR-1870 | 100% |  | 2026-04-11 | 2026-05-04 |  |  | Engineer & Technician [64 h] |  |  | MKH2-02-002-PR-4860 | 0 | 0 | E2290 | 1 | Long |
|  | 2 | **Public Water Utility Distribution** |  | 2026-01-01 | 2026-04-04 |  |  |  |  |  |  |  |  |  |  |  |  |  |  |  |  |
|  | 2 | **HDPE Pipe (PN 16)** |  | 2026-01-01 | 2026-04-04 |  |  |  |  |  |  |  |  |  |  |  |  |  |  |  |  |
| CON-LEG101-PR-1640 |  | PO for HDPE Pipe (PN 16) for Ptable Water | 3d | 2026-01-01 A | 2026-01-01 A | CON-LEG101-SB-1390 | 100% |  | 2026-01-07 | 2026-01-10 |  |  | Engineer & Technician [80 h] |  |  | MKH2-02-002-PR-2200 | 0 | 0 | E1720 | 1 | Long |
| CON-LEG101-PR-1650 |  | Material Fabrication for HDPE Pipe (PN 16) for Ptable Water | 75d | 2026-01-03 A | 2026-03-25 A | CON-LEG101-PR-1640 | 100% |  | 2026-01-11 | 2026-04-13 |  |  | Labor [420 h] |  |  | MKH2-02-002-PR-2210 | 0 | 0 | E1730 | 1 | Long |
| CON-LEG101-PR-1660 |  | Material Delivery for HDPE Pipe (PN 16) for Ptable Water | 15d | 2026-01-04 A | 2026-04-02 A | CON-LEG101-PR-1650 | 100% |  | 2026-04-01 | 2026-04-19 |  |  | Public Water - 110mm Diameter Depth: 0.00 m - 1.50 m. [430.6]; Public Water - 110mm Diameter Depth: 1.51 m - 2.50 m. [281]; Public Water - 110mm Diameter Depth exceeds 2.50m [4]; Public Water - 160mm Diameter Depth: 1.51m - 2.50m [158.6]; Public Water - 200mm Diameter Depth: 0.00m -1.50m [429.6]; Public Water - Concrete encasement, pipe dia 110 mm [38.4]; Labor [535 h]; Public Water - 160mm Diameter Depth: 0.00 m - 1.50 m. [128]; Public Water - 160mm Diameter Depth exceeds 2.50m [4]; Public Water - 200mm Diameter Depth: 1.51m - 2.50m [192.2]; Public Water - 200mm Diameter Depth exceeds 2.50m [4]; Public Water - 400mm Diameter Depth: 0.00m -1.50m [516.2]; Public Water - 400mm Diameter Depth: 1.51m - 2.50m [18.2]; Public Water - 400mm Diameter Depth exceeds 2.50m [4] | 737,624 | 737,624 | MKH2-02-002-PR-2220 | 0.0028203695418334 | 0.28203695418334 | E1740 | 1 | Long |
| CON-LEG101-PR-4010 |  | Staging Time for HDPE Pipe (PN 16) for Ptable Water | 10d | 2026-01-05 A | 2026-04-04 A | CON-LEG101-PR-1660 | 100% |  | 2026-03-12 | 2026-03-28 |  |  | Engineer & Technician [64 h] |  |  |  |  |  |  | 1 | Long |
|  | 1 | **Valves** |  | 2026-01-28 | 2026-03-29 |  |  |  |  |  |  |  |  |  |  |  |  |  |  |  |  |
| CON-LEG101-PR-1330 |  | PO for Valves for Ptable Water | 5d | 2026-01-28 A | 2026-01-28 A | CON-LEG101-SB-2030 | 100% |  | 2026-02-08 | 2026-02-12 |  |  | Engineer & Technician [80 h] |  |  | MKH2-02-002-PR-1420 | 0 | 0 | E1360 | 1 | Long |
| CON-LEG101-PR-1340 |  | Material Fabrication for Valves for Ptable Water | 90d | 2026-01-29 A | 2026-02-02 A | CON-LEG101-PR-1330, CON-LEG101-PR-1860 SS | 100% |  | 2026-02-14 | 2026-06-08 |  |  | Labor [420 h] |  |  | MKH2-02-002-PR-1430 | 0 | 0 | E1370 | 1 | Long |
| CON-LEG101-PR-1350 |  | Material Delivery for Valves for Ptable Water | 15d | 2026-02-03 A | 2026-03-28 A | CON-LEG101-PR-1970, CON-LEG101-PR-1340 | 100% |  | 2026-07-08 | 2026-07-25 |  |  | Public Water - Gate valves, on pipe with diameter 110 mm [15]; Public Water - Gate valves, on pipe with diameter 160 mm [2]; Public Water - Gate valves, on pipe with diameter 200 mm [1.4]; Public Water - Butterfly valves, on pipe with diameter 400 mm [0.2]; Public Water - Wash out valve, on pipes with diameter 110-400 mm [1.4]; Public Water - Air valve complete with gate valves, on pipes with diameter less than 315 mm. [1.2]; Public Water - Air valve complete with gate valves, on pipes with diameter from 355 to 630 mm [0.4]; Public Water - On 315-400 mm diameter pipeline [0.2]; Public Water - Wash out valve chamber; on 110-400 mm diameter pipeline [1.4]; Public Water - Air valve chamber; on less than 315 mm diameter pipeline [1.2]; Public Water - Air valve chamber; on pipe from 355 to 630 mm [0.4]; Labor [535 h] | 250,800 | 250,800 | MKH2-02-002-PR-1440 | 0.00282036965575064 | 0.282036965575064 | E1380 | 1 | Long |
| CON-LEG101-PR-1960 |  | Staging Time for Valves for Ptable Water | 10d | 2026-02-04 A | 2026-03-29 A | CON-LEG101-PR-1350 | 100% |  | 2026-07-26 | 2026-08-05 |  |  | Engineer & Technician [64 h] |  |  | MKH2-02-002-PR-4780 | 0 | 0 | E2250 | 1 | Long |
|  | 10 | **Fence & Gates** |  | 2025-12-27 | 2027-02-06 |  |  |  |  |  |  |  |  |  |  |  |  |  |  |  |  |
|  | 1 | **Metal Fence** |  | 2025-12-27 | 2026-07-30 |  |  |  |  |  |  |  |  |  |  |  |  |  |  |  |  |
| CON-LEG101-PR-2000 |  | PO for Metal Fence | 5d | 2025-12-27 A | 2025-12-27 A | CON-LEG101-SB-2310 | 100% |  | 2026-01-07 | 2026-01-13 |  |  | Engineer & Technician [80 h] |  |  | MKH2-02-002-PR-2350 | 0 | 0 | E2300 | 1 | Long |
| CON-LEG101-PR-2010 |  | Material Fabrication for Metal Fence | 75d | 2025-12-28 A | 2026-06-08 A | CON-LEG101-PR-2000 | 100% |  | 2026-01-13 | 2026-04-16 |  |  | Labor [410 h] |  |  | MKH2-02-002-PR-2360 | 0 | 0 | E2310 | 1 | Long |
| CON-LEG101-PR-2020 |  | Material Delivery for Metal Fence | 15d | 2026-03-10 A | 2026-07-28 A | CON-LEG101-PR-2010 | 100% |  | 2026-05-20 | 2026-06-10 |  |  | "METAL FENCE [671.2]; Labor [535 h] | 872,560 | 872,560 | MKH2-02-002-PR-2370 | 8.40139651145538E-005 | 0.00840139651145538 | E2320 | 1 | Long |
| CON-LEG101-PR-2080 |  | Staging Time for Metal Fence | 10d | 2026-03-11 A | 2026-07-30 A | CON-LEG101-PR-2020 | 100% |  | 2026-06-11 | 2026-06-22 |  |  | Engineer & Technician [128 h] |  |  |  |  |  |  | 1 | Long |
|  | 2 | **Gates** |  | 2025-12-27 | 2027-02-06 |  |  |  |  |  |  |  |  |  |  |  |  |  |  |  |  |
| CON-LEG101-PR-2030 |  | PO for Gates | 5d | 2025-12-27 A | 2025-12-27 A | CON-LEG101-SB-2330 | 100% |  | 2026-01-07 | 2026-01-13 |  |  | Engineer & Technician [80 h] |  |  | MKH2-02-002-PR-2350 | 0 | 0 | E2330 | 1 | Long |
| CON-LEG101-PR-2040 |  | Material Fabrication for Gates | 70d | 2025-12-28 A | 2027-01-07 | CON-LEG101-PR-2010, CON-LEG101-PR-2030, CON-LEG101-PR-2020 | 20% | 56d | 2026-05-04 | 2026-07-29 | -19d | 0d | Labor [400 h] |  |  | MKH2-02-002-PR-2360 | 0 | 0 | E2340 | 0.2 | Long |
| CON-LEG101-PR-2050 |  | Material Delivery for Gates | 15d | 2027-01-09 | 2027-01-25 | CON-LEG101-PR-2040 |  |  |  |  | -19d | 0d | Gate, to fit 15000mm opening x 2500mm high [0.6]; Gate, to fit 3600 mm opening x 2500mm high [0.6]; Labor [535 h] | 31,200 |  | MKH2-02-002-PR-2370 | 8.40139651145538E-005 | 0.00840139651145538 | E2350 |  | Long |
| CON-LEG101-PR-2090 |  | Staging Time for Gates | 10d | 2027-01-26 | 2027-02-06 | CON-LEG101-PR-2050, CON-LEG101-PR-1510 |  |  |  |  | -19d | 76d | Engineer & Technician [64 h] |  |  |  |  |  |  |  | Long |

| ID | WBS | Activity | Duration | Start | Finish | Predecessors | Complete | Planned start | Planned finish | Resources | Cost | Actual cost | USERTEXT | Weight 1 | Total Weight % | Mapping Sheet Activity ID | % A | JEDDAH 1 - Area Name |
| --- | --- | --- | --- | --- | --- | --- | --- | --- | --- | --- | --- | --- | --- | --- | --- | --- | --- | --- |
|  | 3 | **Paint On Cement Plaster** |  | 2026-01-13 | 2026-04-16 |  |  |  |  |  |  |  |  |  |  |  |  |  |
| CON-LEG101-PR-2610 |  | PO for Paint On Cement Plaster | 5d | 2026-01-13 A | 2026-01-13 A | CON-LEG101-SB-3910, CON-LEG101-PR-2030 | 100% | 2026-01-22 | 2026-01-28 | Engineer & Technician [80 h] |  |  | MKH2-02-002-PR-2350 | 0 | 0 | E2910 | 1 | Long |
| CON-LEG101-PR-2620 |  | Material Fabrication for Paint On Cement Plaster | 30d | 2026-04-09 A | 2026-04-12 A | CON-LEG101-PR-2020 SS, CON-LEG101-PR-2610 | 100% | 2026-04-19 | 2026-05-23 | Labor [400 h] |  |  | MKH2-02-002-PR-2360 | 0 | 0 | E2920 | 1 | Long |
| CON-LEG101-PR-2630 |  | Material Delivery for Paint On Cement Plaster | 10d | 2026-04-15 A | 2026-04-15 A | CON-LEG101-PR-2620 | 100% | 2026-05-24 | 2026-06-08 | "PAINT ON CEMENT PLASTER [812.4]; Labor [535 h] | 48,744 | 48,744 | MKH2-02-002-PR-2370 | 8.40139651145538E-005 | 0.00840139651145538 | E2930 | 1 | Long |
| CON-LEG101-PR-2940 |  | Staging Time for Paint On Cement Plaster | 9d | 2026-04-16 A | 2026-04-16 A | CON-LEG101-PR-2630 | 100% | 2026-06-09 | 2026-06-18 | Engineer & Technician [96 h] |  |  |  |  |  |  | 1 | Long |
|  | 7 | **Telecommunications** |  | 2026-02-08 | 2026-04-26 |  |  |  |  |  |  |  |  |  |  |  |  |  |
|  | 2 | **Pipe for the Duct** |  | 2026-02-15 | 2026-03-30 |  |  |  |  |  |  |  |  |  |  |  |  |  |
| CON-LEG101-PR-3160 |  | PO for Pipe for Duct | 5d | 2026-02-15 A | 2026-02-15 A | CON-LEG101-SB-3350 | 100% | 2026-02-25 | 2026-03-02 | Engineer & Technician [80 h] |  |  | MKH2-02-002-PR-1320 | 0 | 0 | E3720 | 1 | Long |
| CON-LEG101-PR-3170 |  | Material Fabrication for Pipe for Duct | 55d | 2026-02-17 A | 2026-03-05 A | CON-LEG101-PR-1100, CON-LEG101-PR-3160 | 100% | 2026-08-19 | 2026-10-22 | Labor [400 h] |  |  | MKH2-02-002-PR-1360 | 0 | 0 | E3750 | 1 | Long |
| CON-LEG101-PR-3180 |  | Material Delivery for Pipe for Duct | 15d | 2026-02-21 A | 2026-03-30 A | CON-LEG101-PR-3170 | 100% | 2026-10-24 | 2026-11-09 | Labor [535 h]; 6-ways ducts, 50mm diameter, (HDPE TYPE) . [1105.2]; 2 x 32 mm HDPE sub-ducts [173.6]; 4 x 32 mm HDPE sub-ducts [34.4]; 6 x 32 mm HDPE sub-ducts [9.4]; 6-ways ducts, 50mm diameter, (HDPE TYPE) + 2 x 32 mm HDPE sub-ducts [516.2]; 6-ways ducts, 50mm diameter, (HDPE TYPE) + 4 x 32 mm HDPE sub-ducts [435.6]; 6-ways ducts, 50mm diameter, (HDPE TYPE) + 6 x 32 mm HDPE sub-ducts [171.6]; Stranded armored Cables, Copper, 4xC16mm² XLPE /SWA/PVC [470]; Duct bank for (1) cables [50]; 6-ways ducts, 50mm diameter, (HDPE TYPE) . [170.2]; 6-ways ducts, 50mm diameter, (HDPE TYPE) + 2 x 32 mm HDPE sub-ducts [12.2] | 460,762 | 460,762 | MKH2-02-002-PR-1400 | 0.00245815896638331 | 0.245815896638331 | E3780 | 1 | Long |
| CON-LEG101-PR-4020 |  | Staging Time for Pipe for Duct | 15d | 2026-02-22 A | 2026-03-30 A | CON-LEG101-PR-3180 | 100% | 2026-11-10 | 2026-11-26 | Engineer & Technician [64 h] |  |  |  |  |  |  | 1 |  |
|  | 1 | **Low Voltage Cables** |  | 2026-02-08 | 2026-04-16 |  |  |  |  |  |  |  |  |  |  |  |  |  |
| CON-LEG101-PR-3190 |  | PO for Low Voltage Cables | 5d | 2026-02-08 A | 2026-02-08 A | CON-LEG101-SB-3390 | 100% | 2026-02-23 | 2026-02-28 | Engineer & Technician [80 h] |  |  | MKH2-02-002-PR-1000 | 0 | 0 | E3790 | 1 | Long |
| CON-LEG101-PR-3210 |  | Material Fabrication for Low Voltage Cables | 55d | 2026-02-10 A | 2026-04-09 A | CON-LEG101-PR-3170 SS, CON-LEG101-PR-3190 | 100% | 2026-08-17 | 2026-10-20 | Labor [400 h] |  |  | MKH2-02-002-PR-1100 | 0 | 0 | E3870 | 1 | Long |
| CON-LEG101-PR-3230 |  | Material Delivery for Low Voltage Cables | 20d | 2026-03-14 A | 2026-04-15 A | CON-LEG101-PR-3210, CON-LEG101-PR-3180, CON-LEG101-PR-4020 | 100% | 2026-10-14 | 2026-11-07 | Labor [535 h]; Stranded Copper wire, , 3xC,2 mm² XLPE/PVC [35]; Single Core Cable, Copper 1C,16mm² CU/PVC For Earth [124]; Single Core Cable, Copper 1C,10mm² CU/PVC For Earth [470] | 13,760 | 13,760 | MKH2-02-002-PR-1200 | 0.00245815908030055 | 0.245815908030055 | E3950 | 1 | Long |
| CON-LEG101-PR-3250 |  | Staging Time for Low Voltage Cables | 20d | 2026-03-15 A | 2026-04-16 A | CON-LEG101-PR-3230 | 100% | 2026-11-07 | 2026-11-30 | Engineer & Technician [64 h] |  |  | MKH2-02-002-PR-4680 | 0 | 0 | E4030 | 1 | Long |
|  | 4 | **Manhole** |  | 2026-02-18 | 2026-04-26 |  |  |  |  |  |  |  |  |  |  |  |  |  |
| CON-LEG101-PR-3200 |  | PO for Manhole | 5d | 2026-02-18 A | 2026-02-19 A | CON-LEG101-SB-3370 SS | 100% | 2026-03-04 | 2026-03-09 | Engineer & Technician [80 h] |  |  | MKH2-02-002-PR-1030 | 0 | 0 | E3800 | 1 | Long |
| CON-LEG101-PR-3220 |  | Material Fabrication for Manhole | 75d | 2026-02-21 A | 2026-04-20 A | CON-LEG101-PR-3210 SS, CON-LEG101-PR-3200 | 100% | 2026-08-26 | 2026-11-22 | Labor [400 h] |  |  | MKH2-02-002-PR-1130 | 0 | 0 | E3880 | 1 | Long |
| CON-LEG101-PR-3240 |  | Material Delivery for Manhole | 15d | 2026-03-15 A | 2026-04-25 A | CON-LEG101-PR-3220, CON-LEG101-PR-3230 | 100% | 2026-11-07 | 2026-11-24 | Labor [535 h]; Reinforced concrete manhole Type 1- 1200x1500x1200mm [3.6]; Reinforced concrete manhole Type 2- 1200x1500x1200mm [11.8] | 261,800 | 261,800 | MKH2-02-002-PR-1230 | 0.00245815908030055 | 0.245815908030055 | E3960 | 1 | Long |
| CON-LEG101-PR-3260 |  | Staging Time for Manhole | 12d | 2026-03-16 A | 2026-04-26 A | CON-LEG101-PR-3240 | 100% | 2026-11-24 | 2026-12-08 | Engineer & Technician [64 h] |  |  | MKH2-02-002-PR-4710 | 0 | 0 | E4040 | 1 | Long |
|  | 9 | **Road Works - Civil** |  | 2026-04-07 | 2026-07-04 |  |  |  |  |  |  |  |  |  |  |  |  |  |
|  | 10 | **Traffic Signs** |  | 2026-04-07 | 2026-07-04 |  |  |  |  |  |  |  |  |  |  |  |  |  |
| CON-LEG101-PR-1610 |  | PO for Traffic Signs | 5d | 2026-04-07 A | 2026-04-08 A | CON-LEG101-SB-1230 | 100% | 2026-01-13 | 2026-01-19 | Engineer & Technician [80 h] |  |  | MKH2-02-002-PR-2170 | 0 | 0 | E1690 | 1 | Long |
| CON-LEG101-PR-1620 |  | Material Fabrication for Traffic Signs | 90d | 2026-04-09 A | 2026-07-01 A | CON-LEG101-PR-1610, CON-LEG101-PR-1340 SS | 100% | 2026-01-20 | 2026-05-11 | Labor [400 h] |  |  | MKH2-02-002-PR-2180 | 0 | 0 | E1700 | 1 | Long |
| CON-LEG101-PR-1630 |  | Material Delivery for Traffic Signs | 15d | 2026-06-13 A | 2026-07-02 A | CON-LEG101-PR-1540, CON-LEG101-PR-1620, CON-LEG101-PR-1570 | 100% | 2027-03-08 | 2027-03-25 | Traffic signs, ground mounted, Sheet Aluminum, (breakaway)Single post, with all accessories [33.2]; Traffic signs, ground mounted, Sheet Aluminum, (breakaway) Double post with all accessories [18.2]; Traffic signs, ground mounted, Sheet Alumenium, (breakaway) One road sign assembly mounted on two tubular post with all accessories [0.8]; Labor [535 h] | 137,260 | 137,260 | MKH2-02-002-PR-2190 | 0 | 0 | E1710 | 1 | Long |
| CON-LEG101-PR-2060 |  | Staging Time for Traffic Signs | 10d | 2026-06-14 A | 2026-07-04 A | CON-LEG101-PR-1630 | 100% | 2027-03-25 | 2027-04-06 | Engineer & Technician [64 h] |  |  |  |  |  |  | 1 | Long |

| ID | WBS | Activity | Duration | Start | Finish | Predecessors | Complete | Remaining | Planned start | Planned finish | Total float | Free float | Resources | Cost | Actual cost | USERTEXT | Weight 1 | Total Weight % | Mapping Sheet Activity ID | % A | JEDDAH 1 - Area Name |
| --- | --- | --- | --- | --- | --- | --- | --- | --- | --- | --- | --- | --- | --- | --- | --- | --- | --- | --- | --- | --- | --- |
|  | 1 | **Electrical Network** |  | 2026-02-08 | 2027-06-26 |  |  |  |  |  |  |  |  |  |  |  |  |  |  |  |  |
|  | 11 | **Pipe for the Duct** |  | 2026-02-15 | 2026-03-31 |  |  |  |  |  |  |  |  |  |  |  |  |  |  |  |  |
| CON-LEG101-PR-1260 |  | PO for Pipe for Duct | 3d | 2026-02-15 A | 2026-02-16 A | CON-LEG101-SB-1270 | 100% |  | 2026-03-04 | 2026-03-07 |  |  | Engineer & Technician [80 h] |  |  | MKH2-02-002-PR-1320 | 0 | 0 | E1260 | 1 | Long |
| CON-LEG101-PR-1290 |  | Material Fabrication for Pipe for Duct | 90d | 2026-02-16 A | 2026-03-24 A | CON-LEG101-PR-1260 | 100% |  | 2026-03-04 | 2026-06-25 |  |  | Labor [400 h] |  |  | MKH2-02-002-PR-1360 | 0 | 0 | E1300 | 1 | Long |
| CON-LEG101-PR-1320 |  | Material Delivery for Pipe for Duct | 15d | 2026-02-25 A | 2026-03-28 A | CON-LEG101-PR-1780, CON-LEG101-PR-2110, CON-LEG101-PR-1290 | 100% |  | 2026-06-27 | 2026-07-13 |  |  | "Excavation for Trench size 90cm wide and 80cm deep [810.8]; Labor [535 h]; Duct bank for (1) cables [105]; Duct bank for (2) cables [20]; Duct bank for (4) cables [15]; Duct bank for (3) cables [10]; Duct bank for (1) cables [65]; Duct bank for (2) cables [25] | 107,032 | 107,032 | MKH2-02-002-PR-1400 | 0.00245815896638331 | 0.245815896638331 | E1340 | 1 | Long |
| CON-LEG101-PR-1400 |  | Staging Time for Valves for Pipe for Duct | 10d | 2026-02-26 A | 2026-03-31 A | CON-LEG101-PR-1320, CON-LEG101-PR-1340 | 100% |  | 2026-07-14 | 2026-07-25 |  |  | Engineer & Technician [64 h] |  |  |  |  |  |  | 1 |  |
|  | 12 | **Cable Termination & Joints** |  | 2026-09-02 | 2027-04-06 |  |  |  |  |  |  |  |  |  |  |  |  |  |  |  |  |
| CON-LEG101-PR-1240 |  | PO for Cable Termination & Joints | 5d | 2026-09-02 A | 2026-11-09 | CON-LEG101-SB-1310 |  | 5d | 2026-09-02 | 2026-09-07 | -137d | 0d | Engineer & Technician [80 h] |  |  | MKH2-02-002-PR-1300 | 0 | 0 | E1240 | 0 | Long |
| CON-LEG101-PR-1270 |  | Material Fabrication for Cable Termination & Joints | 90d | 2026-11-10 | 2027-02-28 | CON-LEG101-PR-1240, CON-LEG101-PR-1620 SS |  |  |  |  | -137d | 0d | Labor [400 h] |  |  | MKH2-02-002-PR-1340 | 0 | 0 | E1280 |  | Long |
| CON-LEG101-PR-1300 |  | Material Delivery for Cable Termination & Joints | 15d | 2027-03-01 | 2027-03-17 | CON-LEG101-PR-1320, CON-LEG101-PR-1270, CON-LEG101-PR-1620 |  |  |  |  | -137d | 7d | Cable Termination for 13.8 kv (3-C)x 50 mm² CU /XLPE/PVC, Unarmored. [1.6]; Labor [535 h]; Cable Termination for 13.8 kv 3Cx 500 mm², Al /XLPE/LLDPE [5.6]; Straight joints cables for 13.8 kv 3Cx 500 mm², Al /XLPE/LLDPE [7.3] | 39,320 |  | MKH2-02-002-PR-1380 | 0.00245815896638331 | 0.245815896638331 | E1320 |  | Long |
| CON-LEG101-PR-1450 |  | Stagging Time for Cable Termination & Joints | 10d | 2027-03-27 | 2027-04-06 | CON-LEG101-PR-1300, CON-LEG101-PR-1880 |  |  |  |  | -144d | 0d | Engineer & Technician |  |  |  |  |  |  |  |  |
|  | 13 | **Earthing System** |  | 2026-02-08 | 2026-05-10 |  |  |  |  |  |  |  |  |  |  |  |  |  |  |  |  |
| CON-LEG101-PR-1250 |  | PO for Earthing System | 5d | 2026-02-08 A | 2026-02-09 A | CON-LEG101-SB-1350 | 100% |  | 2026-03-04 | 2026-03-09 |  |  | Engineer & Technician [80 h] |  |  | MKH2-02-002-PR-1310 | 0 | 0 | E1250 | 1 | Long |
| CON-LEG101-PR-1280 |  | Material Fabrication for Earthing System | 60d | 2026-02-27 A | 2026-03-05 A | CON-LEG101-PR-1250, CON-LEG101-PR-1290 | 100% |  | 2026-06-27 | 2026-09-03 |  |  | Labor [400 h] |  |  | MKH2-02-002-PR-1350 | 0 | 0 | E1290 | 1 | Long |
| CON-LEG101-PR-1310 |  | Material Delivery for Earthing System | 15d | 2026-05-02 A | 2026-05-07 A | CON-LEG101-PR-1450, CON-LEG101-PR-1280, CON-LEG101-PR-1400 | 100% |  | 2026-11-07 | 2026-11-23 |  |  | Earthing for Distribution panels,SL feeder pillars, KWH, Unit substations and RMU [4.4]; Earthing for Streetlighting feeders for every end pole circuits. [7.8]; Earthing for Industrial switch poles and GSM towers [1.8]; Labor [535 h] | 35,900 | 35,900 | MKH2-02-002-PR-1390 | 0.00245815896638331 | 0.245815896638331 | E1330 | 1 | Long |
| CON-LEG101-PR-1480 |  | Stagging Time for Earthing System | 10d | 2026-05-09 A | 2026-05-10 A | CON-LEG101-PR-1310, CON-LEG101-PR-1450, CON-LEG101-PR-1510 | 100% |  | 2026-11-24 | 2026-12-05 |  |  | Engineer & Technician |  |  |  |  |  |  | 1 |  |
|  | 1 | **Medium Voltage Cable** |  | 2026-09-02 | 2027-03-25 |  |  |  |  |  |  |  |  |  |  |  |  |  |  |  |  |
| CON-LEG101-PR-1000 |  | PO for Medium Voltage Cable | 5d | 2026-09-02 A | 2026-11-09 | CON-LEG101-SB-1670 |  | 5d | 2026-09-02 | 2026-09-07 | -152d | 4.2d | Engineer & Technician [80 h] |  |  | MKH2-02-002-PR-1000 | 0 | 0 | E1000 | 0 | Long |
| CON-LEG101-PR-1080 |  | Material Fabrication for Medium Voltage Cable | 60d | 2026-11-30 | 2027-02-07 | CON-LEG101-LR-15010, CON-LEG101-LR-15030, CON-LEG101-PR-1000 |  |  |  |  | -169d | 0d | Labor [400 h] |  |  | MKH2-02-002-PR-1100 | 0 | 0 | E1080 |  | Long |
| CON-LEG101-PR-1160 |  | Material Delivery for Medium Voltage Cable | 15d | 2027-02-18 | 2027-03-08 | CON-LEG101-LR-15020, CON-LEG101-PR-1080 |  |  |  |  | -169d | 0d | Cable 13.8 kV (3-C)x 50 mm² CU /XLPE/PVC, Unarmored [4]; Labor [535 h]; Cable 13.8 kV 3Cx 500 mm² Al XLPE,/LLDPE / Unarmored [2900] | 640,000 |  | MKH2-02-002-PR-1200 | 0.00245815908030055 | 0.245815908030055 | E1160 |  | Long |
| CON-LEG101-PR-1880 |  | Staging Time for Medium Voltage Cable | 15d | 2027-03-09 | 2027-03-25 | CON-LEG101-PR-1160 |  |  |  |  | -169d | 0d | Engineer & Technician [64 h] |  |  | MKH2-02-002-PR-4680 | 0 | 0 | E2170 |  | Long |
|  | 4 | **Street Lighting Sub-station** |  | 2026-04-05 | 2027-05-27 |  |  |  |  |  |  |  |  |  |  |  |  |  |  |  |  |
| CON-LEG101-PR-1010 |  | PO for Street Lighting Sub-station | 5d | 2026-04-05 A | 2026-04-05 A | CON-LEG101-SB-1750 | 100% |  | 2026-07-13 | 2026-07-19 |  |  | Engineer & Technician [80 h] |  |  | MKH2-02-002-PR-1030 | 0 | 0 | E1010 | 1 | Long |
| CON-LEG101-PR-1090 |  | Material Fabrication for Street Lighting Sub-station | 60d | 2027-02-08 | 2027-04-24 | CON-LEG101-PR-1080, CON-LEG101-PR-1010 |  |  |  |  | -105d | 0d | Labor [400 h] |  |  | MKH2-02-002-PR-1130 | 0 | 0 | E1090 | 0.7 | Long |
| CON-LEG101-PR-1170 |  | Material Delivery for Street Lighting Sub-station | 15d | 2027-04-25 | 2027-05-11 | CON-LEG101-PR-1480, CON-LEG101-PR-1090 |  |  |  |  | -105d | 0d | Unit Substation 13.8/0.4 K V, 500kVA ,Including concrete foundations and fencing, According to the specifications and standards of SEC [0.8]; Labor [535 h] | 68,000 |  | MKH2-02-002-PR-1230 | 0.00245815908030055 | 0.245815908030055 | E1170 |  | Long |
| CON-LEG101-PR-1890 |  | Staging Time for Street Lighting Sub-station | 10d | 2027-05-12 | 2027-05-27 | CON-LEG101-PR-1170, CON-LEG101-PR-1480 |  |  |  |  | -105d | 0d | Engineer & Technician [64 h] |  |  | MKH2-02-002-PR-4710 | 0 | 0 | E2180 |  | Long |

| ID | WBS | Activity | Duration | Start | Finish | Predecessors | Complete | Planned start | Planned finish | Total float | Free float | Resources | Cost | Actual cost | USERTEXT | Weight 1 | Total Weight % | Mapping Sheet Activity ID | % A | JEDDAH 1 - Area Name |
| --- | --- | --- | --- | --- | --- | --- | --- | --- | --- | --- | --- | --- | --- | --- | --- | --- | --- | --- | --- | --- |
|  | 5 | **Low Voltage Cables** |  | 2026-02-08 | 2026-04-16 |  |  |  |  |  |  |  |  |  |  |  |  |  |  |  |
| CON-LEG101-PR-1020 |  | PO for Low Voltage Cables | 5d | 2026-02-08 A | 2026-02-09 A | CON-LEG101-SB-1790 | 100% | 2026-03-04 | 2026-03-09 |  |  | Engineer & Technician [80 h] |  |  | MKH2-02-002-PR-1040 | 0 | 0 | E1020 | 1 | Long |
| CON-LEG101-PR-1100 |  | Material Fabrication for Low Voltage Cables | 60d | 2026-02-11 A | 2026-04-09 A | CON-LEG101-PR-1080, CON-LEG101-PR-1020 | 100% | 2026-06-17 | 2026-08-25 |  |  | Labor [400 h] |  |  | MKH2-02-002-PR-1140 | 0 | 0 | E1100 | 1 | Long |
| CON-LEG101-PR-1180 |  | Material Delivery for Low Voltage Cables | 15d | 2026-03-14 A | 2026-04-15 A | CON-LEG101-PR-1170, CON-LEG101-PR-1100, CON-LEG101-PR-2090 | 100% | 2026-10-10 | 2026-10-26 |  |  | Labor [535 h]; Stranded armored Cables, Copper, 4C,50mm² XLPE /SWA/PVC [4]; Stranded armored Cables, Copper, 4C,35mm² XLPE/SWA /PVC [520]; Stranded armored Cables, Copper, 4xC16mm² XLPE /SWA/PVC [3400]; Single Core Cable, Copper 1C,16mm² CU/PVC For Earth [520]; Single Core Cable, Copper 1C,10mm² CU/PVC For Earth [3400]; Single Core Cable, Copper 1C,25mm² CU/PVC For Earth [4] | 309,640 | 309,640 | MKH2-02-002-PR-1240 | 0.00245815908030055 | 0.245815908030055 | E1180 | 1 | Long |
| CON-LEG101-PR-1900 |  | Staging Time for Low Voltage Cables | 10d | 2026-03-15 A | 2026-04-16 A | CON-LEG101-PR-1180, CON-LEG101-PR-2470, CON-LEG101-PR-2090, CON-LEG101-PR-1890 | 100% | 2026-10-27 | 2026-11-07 |  |  | Engineer & Technician [64 h] |  |  | MKH2-02-002-PR-4720 | 0 | 0 | E2190 | 1 | Long |
|  | 2 | **Ring Main Unit** |  | 2026-11-09 | 2027-06-26 |  |  |  |  |  |  |  |  |  |  |  |  |  |  |  |
| CON-LEG101-PR-2480 |  | PO for Ring Main Unit | 5d | 2026-11-09 | 2026-11-15 | CON-LEG101-SB-1710 |  |  |  | -61.2d | 0d | Engineer & Technician [80 h] |  |  | MKH2-02-002-PR-1040 | 0 | 0 | E2780 |  | Long |
| CON-LEG101-PR-2490 |  | Material Fabrication for Ring Main Unit | 70d | 2027-01-27 | 2027-04-24 | CON-LEG101-PR-1090 FF, CON-LEG101-PR-2480 |  |  |  | -80d | 0d | Labor [400 h] |  |  | MKH2-02-002-PR-1140 | 0 | 0 | E2790 |  | Long |
| CON-LEG101-PR-2500 |  | Material Delivery for Ring Main Unit | 15d | 2027-05-29 | 2027-06-14 | CON-LEG101-PR-1900, CON-LEG101-PR-2490, CON-LEG101-PR-1900 FF, CON-LEG101-PR-1910, CON-LEG101-PR-1920 |  |  |  | -105d | 0d | Normally Open Point (R M U) 13.8 kv for Outdoor type according to the Saudi Electric Company specifications and requirements. [1.4]; Ring Main Unit RMU, 13.8KV, According to the specifications and standards of SEC [0.8]; Labor [535 h] | 144,000 |  | MKH2-02-002-PR-1240 | 0.00245815908030055 | 0.245815908030055 | E2800 |  | Long |
| CON-LEG101-PR-2510 |  | Staging Time for Ring Main Unit | 10d | 2027-06-15 | 2027-06-26 | CON-LEG101-PR-2500 |  |  |  | -105d | 0d | Engineer & Technician [64 h] |  |  | MKH2-02-002-PR-4720 | 0 | 0 | E2810 |  | Long |
|  | 6 | **Lighting poles** |  | 2026-02-16 | 2026-04-13 |  |  |  |  |  |  |  |  |  |  |  |  |  |  |  |
| CON-LEG101-PR-1030 |  | PO for Lighting poles | 4d | 2026-02-16 A | 2026-02-16 A | CON-LEG101-SB-1830 | 100% | 2026-02-18 | 2026-02-23 |  |  | Engineer & Technician [80 h] |  |  | MKH2-02-002-PR-1050 | 0 | 0 | E1030 | 1 | Long |
| CON-LEG101-PR-1110 |  | Material Fabrication for Lighting poles | 75d | 2026-02-17 A | 2026-03-31 A | CON-LEG101-PR-1160, CON-LEG101-PR-1030 | 100% | 2026-06-28 | 2026-09-22 |  |  | Labor [400 h] |  |  | MKH2-02-002-PR-1150 | 0 | 0 | E1110 | 1 | Long |
| CON-LEG101-PR-1190 |  | Material Delivery for Lighting poles | 15d | 2026-04-01 A | 2026-04-12 A | CON-LEG101-PR-1110 | 100% | 2026-09-16 | 2026-10-05 |  |  | Lighting poles with 1 arm, height of (8 ) meters, including the power distribution box, cables, and RCC foundation. [88.6]; Labor [535 h] | 301,240 | 301,240 | MKH2-02-002-PR-1250 | 0.00245815908030055 | 0.245815908030055 | E1190 | 1 | Long |
| CON-LEG101-PR-1910 |  | Staging Time for Lighting poles | 12d | 2026-04-02 A | 2026-04-13 A | CON-LEG101-PR-1190 | 100% | 2026-10-05 | 2026-10-19 |  |  | Engineer & Technician [64 h] |  |  | MKH2-02-002-PR-4730 | 0 | 0 | E2200 | 1 | Long |
|  | 3 | **Lighting panels** |  | 2026-04-05 | 2026-08-12 |  |  |  |  |  |  |  |  |  |  |  |  |  |  |  |
| CON-LEG101-PR-2520 |  | PO for Lighting panels | 6d | 2026-04-05 A | 2026-04-05 A | CON-LEG101-SB-2430 | 100% | 2026-07-08 | 2026-07-14 |  |  | Engineer & Technician [80 h] |  |  | MKH2-02-002-PR-1050 | 0 | 0 | E2820 | 1 | Long |
| CON-LEG101-PR-2530 |  | Material Fabrication for Lighting panels | 75d | 2026-05-02 A | 2026-08-06 A | CON-LEG101-PR-2490 SS, CON-LEG101-PR-2520 | 100% | 2026-10-01 | 2026-12-27 |  |  | Labor [400 h] |  |  | MKH2-02-002-PR-1150 | 0 | 0 | E2830 | 1 | Long |
| CON-LEG101-PR-2540 |  | Material Delivery for Lighting panels | 15d | 2026-08-08 A | 2026-08-10 A | CON-LEG101-PR-2530 | 100% | 2026-10-27 | 2026-11-14 |  |  | Earthing for Distribution panels,SL feeder pillars, KWH, Unit substations and RMU; Labor [535 h] |  |  | MKH2-02-002-PR-1250 | 0.00245815908030055 | 0.245815908030055 | E2840 | 1 | Long |
| CON-LEG101-PR-2550 |  | Staging Time for Lighting panels | 10d | 2026-08-12 A | 2026-08-12 A | CON-LEG101-PR-2510 FF, CON-LEG101-PR-2540 | 100% | 2027-03-16 | 2027-03-27 |  |  | Engineer & Technician [64 h] |  |  | MKH2-02-002-PR-4730 | 0 | 0 | E2850 | 1 | Long |
|  | 7 | **Street Lighting Luminaire** |  | 2026-02-16 | 2026-04-13 |  |  |  |  |  |  |  |  |  |  |  |  |  |  |  |
| CON-LEG101-PR-1040 |  | PO for Street Lighting Luminaire | 4d | 2026-02-16 A | 2026-02-16 A | CON-LEG101-SB-1870 | 100% | 2026-02-18 | 2026-02-23 |  |  | Engineer & Technician [80 h] |  |  | MKH2-02-002-PR-1060 | 0 | 0 | E1040 | 1 | Long |
| CON-LEG101-PR-1120 |  | Material Fabrication for Street Lighting Luminaire | 75d | 2026-02-17 A | 2026-03-31 A | CON-LEG101-PR-1110 SS, CON-LEG101-PR-1040 | 100% | 2026-06-28 | 2026-09-22 |  |  | Labor [400 h] |  |  | MKH2-02-002-PR-1160 | 0 | 0 | E1120 | 1 | Long |
| CON-LEG101-PR-1200 |  | Material Delivery for Street Lighting Luminaire | 15d | 2026-04-01 A | 2026-04-12 A | CON-LEG101-PR-1120 | 100% | 2026-09-16 | 2026-10-05 |  |  | Street Lighting( LED) Luminous efficacy ? 120Lum/w complete with control gear and lamp, (100) WATT. Max. [88.6]; Labor [535 h] | 88,600 | 88,600 | MKH2-02-002-PR-1260 | 0.00245815908030055 | 0.245815908030055 | E1200 | 1 | Long |
| CON-LEG101-PR-1920 |  | Staging Time for Street Lighting Luminaire | 12d | 2026-04-02 A | 2026-04-13 A | CON-LEG101-PR-1200 | 100% | 2026-10-05 | 2026-10-19 |  |  | Engineer & Technician [64 h] |  |  | MKH2-02-002-PR-4740 | 0 | 0 | E2210 | 1 | Long |

| ID | WBS | Activity | Duration | Start | Finish | Predecessors | Complete | Planned start | Planned finish | Resources | Cost | Actual cost | USERTEXT | Weight 1 | Total Weight % | Mapping Sheet Activity ID | % A | JEDDAH 1 - Area Name |
| --- | --- | --- | --- | --- | --- | --- | --- | --- | --- | --- | --- | --- | --- | --- | --- | --- | --- | --- |
|  | 8 | **System for KWHM** |  | 2026-07-16 | 2026-08-12 |  |  |  |  |  |  |  |  |  |  |  |  |  |
| CON-LEG101-PR-1050 |  | PO for System for KWHM | 6d | 2026-07-16 A | 2026-07-16 A | CON-LEG101-SB-1910 | 100% | 2026-08-05 | 2026-08-11 | Engineer & Technician [80 h] |  |  | MKH2-02-002-PR-1070 | 0 | 0 | E1050 | 1 | Long |
| CON-LEG101-PR-1130 |  | Material Fabrication for System for KWHM | 90d | 2026-07-18 A | 2026-08-06 A | CON-LEG101-PR-2490, CON-LEG101-PR-1050 | 100% | 2026-12-01 | 2027-03-21 | Labor [410.01 h] |  |  | MKH2-02-002-PR-1170 | 0 | 0 | E1130 | 1 | Long |
| CON-LEG101-PR-1210 |  | Material Delivery for System for KWHM | 15d | 2026-08-08 A | 2026-08-10 A | CON-LEG101-PR-1130, CON-LEG101-PR-2060 | 100% | 2027-05-02 | 2027-05-24 | Earthing for Distribution panels,SL feeder pillars, KWH, Unit substations and RMU; Supply and installation of KWH meter mounting frame including concrete block wall for KWH meter inculding foundations and finishings according to the standareds and specification of SEC [0.8]; Labor [535 h] | 8,000 | 8,000 | MKH2-02-002-PR-1270 | 0.00245815908030055 | 0.245815908030055 | E1210 | 1 | Long |
| CON-LEG101-PR-1930 |  | Staging Time for System for KWHM | 10d | 2026-08-11 A | 2026-08-12 A | CON-LEG101-PR-1210 | 100% | 2027-05-24 | 2027-06-05 | Engineer & Technician [64 h] |  |  | MKH2-02-002-PR-4750 | 0 | 0 | E2220 | 1 | Long |
|  | 9 | **Feeder Piller** |  | 2026-07-16 | 2026-08-12 |  |  |  |  |  |  |  |  |  |  |  |  |  |
| CON-LEG101-PR-1060 |  | PO for Feeder Piller | 6d | 2026-07-16 A | 2026-07-16 A | CON-LEG101-SB-1950 | 100% | 2026-08-05 | 2026-08-11 | Engineer & Technician [80 h] |  |  | MKH2-02-002-PR-1080 | 0 | 0 | E1060 | 1 | Long |
| CON-LEG101-PR-1140 |  | Material Fabrication for Feeder Piller | 75d | 2026-07-18 A | 2026-08-06 A | CON-LEG101-PR-2530 SS, CON-LEG101-PR-1060 | 100% | 2026-09-09 | 2026-12-06 | Labor [400 h] |  |  | MKH2-02-002-PR-1180 | 0 | 0 | E1140 | 1 | Long |
| CON-LEG101-PR-1220 |  | Material Delivery for Feeder Piller | 15d | 2026-08-08 A | 2026-08-10 A | CON-LEG101-PR-1140 | 100% | 2026-10-27 | 2026-11-14 | Street Lighting feeder pillars [2]; Labor [535 h] | 70,000 | 70,000 | MKH2-02-002-PR-1280 | 0.00245815908030055 | 0.245815908030055 | E1220 | 1 | Long |
| CON-LEG101-PR-1940 |  | Staging Time for Feeder Piller | 15d | 2026-08-11 A | 2026-08-12 A | CON-LEG101-PR-1220 | 100% | 2026-11-14 | 2026-12-01 | Engineer & Technician [64 h] |  |  | MKH2-02-002-PR-4760 | 0 | 0 | E2230 | 1 | Long |
|  | 10 | **Street Lighting Panels** |  | 2026-07-16 | 2026-08-12 |  |  |  |  |  |  |  |  |  |  |  |  |  |
| CON-LEG101-PR-1070 |  | PO for Street Lighting Panels | 6d | 2026-07-16 A | 2026-07-16 A | CON-LEG101-SB-1990 | 100% | 2026-08-05 | 2026-08-11 | Engineer & Technician [80 h] |  |  | MKH2-02-002-PR-1090 | 0 | 0 | E1070 | 1 | Long |
| CON-LEG101-PR-1150 |  | Material Fabrication for Street Lighting Panels | 75d | 2026-07-18 A | 2026-08-06 A | CON-LEG101-PR-1140 SS, CON-LEG101-PR-1070 | 100% | 2026-09-09 | 2026-12-06 | Labor [400 h] |  |  | MKH2-02-002-PR-1190 | 0 | 0 | E1150 | 1 | Long |
| CON-LEG101-PR-1230 |  | Material Delivery for Street Lighting Panels | 15d | 2026-08-08 A | 2026-08-10 A | CON-LEG101-PR-1150 | 100% | 2026-10-27 | 2026-11-14 | Main 100A MCCB with outgoing [0.8]; Labor [535 h] | 16,000 | 16,000 | MKH2-02-002-PR-1290 | 0.00245815908030055 | 0.245815908030055 | E1230 | 1 | Long |
| CON-LEG101-PR-1950 |  | Staging Time for Street Lighting Panels | 10d | 2026-08-11 A | 2026-08-12 A | CON-LEG101-PR-1230 | 100% | 2026-11-14 | 2026-11-25 | Engineer & Technician [64 h] |  |  | MKH2-02-002-PR-4770 | 0 | 0 | E2240 | 1 | Long |
|  | 8 | **CCTV feeding system and GSM** |  | 2026-03-30 | 2026-06-10 |  |  |  |  |  |  |  |  |  |  |  |  |  |
|  | 15 | **LED Screen 43" (24/7 operation) with Ethernet decoders** |  | 2026-03-30 | 2026-06-10 |  |  |  |  |  |  |  |  |  |  |  |  |  |
| CON-LEG101-PR-3270 |  | PO for LED Screen 43" (24/7 operation) with Ethernet decoders | 5d | 2026-03-30 A | 2026-03-30 A | CON-LEG101-SB-3590 SS | 100% | 2026-04-04 | 2026-04-08 | Engineer & Technician [80 h] |  |  | MKH2-02-002-PR-1320 | 0 | 0 | E4050 | 1 | Long |
| CON-LEG101-PR-3280 |  | Material Fabrication for LED Screen 43" (24/7 operation) with Ethernet decoders | 60d | 2026-04-04 A | 2026-06-04 A | CON-LEG101-PR-3210, CON-LEG101-PR-3270 | 100% | 2026-09-02 | 2026-11-12 | Labor [400 h] |  |  | MKH2-02-002-PR-1360 | 0 | 0 | E4060 | 1 | Long |
| CON-LEG101-PR-3290 |  | Material Delivery for LED Screen 43" (24/7 operation) with Ethernet decoders | 15d | 2026-06-10 A | 2026-06-10 A | CON-LEG101-PR-3280, CON-LEG101-PR-2550, CON-LEG101-PR-1940, CON-LEG101-PR-1950 | 100% | 2027-02-24 | 2027-03-13 | Labor [535 h]; LED Screen 43" (24/7 operation) with Ethernet decoders [0.8] | 12,000 | 12,000 | MKH2-02-002-PR-1400 | 0.00245815896638331 | 0.245815896638331 | E4070 | 1 | Long |
| CON-LEG101-PR-3950 |  | Staging Time for LED Screen 43" (24/7 operation) with Ethernet decoders | 10d | 2026-06-10 A | 2026-06-10 A | CON-LEG101-PR-3290 | 100% | 2027-03-14 | 2027-03-24 | Engineer & Technician [64 h] |  |  |  |  |  |  | 1 | Long |
|  | 16 | **Network Video Recorder 4k 64 Channel** |  | 2026-03-30 | 2026-06-10 |  |  |  |  |  |  |  |  |  |  |  |  |  |
| CON-LEG101-PR-3740 |  | PO for Network Video Recorder 4k 64 Channel | 2d | 2026-03-30 A | 2026-03-30 A | CON-LEG101-SB-3610 SS+3d | 100% | 2026-04-04 | 2026-04-05 | Engineer & Technician [80 h] |  |  | MKH2-02-002-PR-1320 | 0 | 0 | E4520 | 1 | Long |
| CON-LEG101-PR-3750 |  | Material Fabrication for Network Video Recorder 4k 64 Channel | 65d | 2026-04-04 A | 2026-06-04 A | CON-LEG101-PR-3280, CON-LEG101-PR-3740 | 100% | 2026-11-12 | 2027-01-27 | Labor [400 h] |  |  | MKH2-02-002-PR-1360 | 0 | 0 | E4530 | 1 | Long |
| CON-LEG101-PR-3760 |  | Material Delivery for Network Video Recorder 4k 64 Channel | 10d | 2026-06-10 A | 2026-06-10 A | CON-LEG101-PR-3750 | 100% | 2026-12-10 | 2026-12-21 | Labor [535 h]; Network Video Recorder 4k 64 Channel, Up to 12 MP high-definition live view, storage and playback, 2 HDMI (different source) and 2 VGA (different source) interfaces (Min). [0.2] | 10,000 | 10,000 | MKH2-02-002-PR-1400 | 0.00245815896638331 | 0.245815896638331 | E4540 | 1 | Long |
| CON-LEG101-PR-3960 |  | Staging Time for Network Video Recorder 4k 64 Channel | 10d | 2026-06-10 A | 2026-06-10 A | CON-LEG101-PR-3760 | 100% | 2026-12-22 | 2027-01-02 | Engineer & Technician [64 h] |  |  |  |  |  |  | 1 | Long |

| ID | WBS | Activity | Duration | Start | Finish | Predecessors | Complete | Planned start | Planned finish | Resources | Cost | Actual cost | USERTEXT | Weight 1 | Total Weight % | Mapping Sheet Activity ID | % A | JEDDAH 1 - Area Name |
| --- | --- | --- | --- | --- | --- | --- | --- | --- | --- | --- | --- | --- | --- | --- | --- | --- | --- | --- |
|  | 17 | **Keypad** |  | 2026-03-30 | 2026-06-10 |  |  |  |  |  |  |  |  |  |  |  |  |  |
| CON-LEG101-PR-3770 |  | PO for Keypad | 2d | 2026-03-30 A | 2026-03-30 A | CON-LEG101-SB-3650 SS+3d | 100% | 2026-04-04 | 2026-04-05 | Engineer & Technician [80 h] |  |  | MKH2-02-002-PR-1320 | 0 | 0 | E4550 | 1 | Long |
| CON-LEG101-PR-3780 |  | Material Fabrication for Keypad | 75d | 2026-04-04 A | 2026-06-04 A | CON-LEG101-PR-3750 SS, CON-LEG101-PR-3770 | 100% | 2026-11-12 | 2027-02-08 | Labor [400 h] |  |  | MKH2-02-002-PR-1360 | 0 | 0 | E4560 | 1 | Long |
| CON-LEG101-PR-3790 |  | Material Delivery for Keypad | 12d | 2026-06-10 A | 2026-06-10 A | CON-LEG101-PR-3780 | 100% | 2026-12-15 | 2026-12-28 | Labor [535 h]; Keypad [0.2] | 20,000 | 20,000 | MKH2-02-002-PR-1400 | 0.00245815896638331 | 0.245815896638331 | E4570 | 1 | Long |
| CON-LEG101-PR-3970 |  | Staging Time for Keypad | 10d | 2026-06-10 A | 2026-06-10 A | CON-LEG101-PR-3790 | 100% | 2026-12-29 | 2027-01-09 | Engineer & Technician [64 h] |  |  |  |  |  |  | 1 | Long |
|  | 1 | **Fiber Optic Patch Panel 12 port** |  | 2026-03-30 | 2026-06-10 |  |  |  |  |  |  |  |  |  |  |  |  |  |
| CON-LEG101-PR-3300 |  | PO for Fiber Optic Patch Panel 12 port | 5d | 2026-03-30 A | 2026-03-30 A | CON-LEG101-SB-3410 | 100% | 2026-04-08 | 2026-04-14 | Engineer & Technician [80 h] |  |  | MKH2-02-002-PR-1000 | 0 | 0 | E4080 | 1 | Long |
| CON-LEG101-PR-3320 |  | Material Fabrication for Fiber Optic Patch Panel 12 port | 75d | 2026-04-04 A | 2026-06-04 A | CON-LEG101-PR-3220 SS, CON-LEG101-PR-3300 | 100% | 2026-08-24 | 2026-11-19 | Labor [400 h] |  |  | MKH2-02-002-PR-1100 | 0 | 0 | E4100 | 1 | Long |
| CON-LEG101-PR-3340 |  | Material Delivery for Fiber Optic Patch Panel 12 port | 15d | 2026-06-10 A | 2026-06-10 A | CON-LEG101-PR-3320 | 100% | 2026-11-17 | 2026-12-03 | Labor [535 h]; Fiber Optic Patch Panel 12 port [0.4]; Stranded armored Cables, Copper, 4C,35mm² XLPE/SWA /PVC [124] | 17,640 | 17,640 | MKH2-02-002-PR-1200 | 0.00245815908030055 | 0.245815908030055 | E4120 | 1 | Long |
| CON-LEG101-PR-3360 |  | Staging Time for Fiber Optic Patch Panel 12 port | 15d | 2026-06-10 A | 2026-06-10 A | CON-LEG101-PR-3340 | 100% | 2026-12-05 | 2026-12-21 | Engineer & Technician [64 h] |  |  | MKH2-02-002-PR-4680 | 0 | 0 | E4140 | 1 | Long |
|  | 4 | **Modular Industrial Switches for main pole** |  | 2026-03-30 | 2026-06-10 |  |  |  |  |  |  |  |  |  |  |  |  |  |
| CON-LEG101-PR-3310 |  | PO for Modular Industrial Switches for main pole | 5d | 2026-03-30 A | 2026-03-30 A | CON-LEG101-SB-3510 | 100% | 2026-04-08 | 2026-04-14 | Engineer & Technician [80 h] |  |  | MKH2-02-002-PR-1030 | 0 | 0 | E4090 | 1 | Long |
| CON-LEG101-PR-3330 |  | Material Fabrication for Modular Industrial Switches for main pole | 75d | 2026-04-04 A | 2026-06-04 A | CON-LEG101-PR-3320 SS, CON-LEG101-PR-3310 | 100% | 2026-08-24 | 2026-11-19 | Labor [400 h] |  |  | MKH2-02-002-PR-1130 | 0 | 0 | E4110 | 1 | Long |
| CON-LEG101-PR-3350 |  | Material Delivery for Modular Industrial Switches for main pole | 15d | 2026-06-10 A | 2026-06-10 A | CON-LEG101-PR-3360, CON-LEG101-PR-3330, CON-LEG101-PR-3360 FF | 100% | 2026-12-22 | 2027-01-07 | Labor [535 h]; Modular Industrial Switches for main pole [0.2] | 3,000 | 3,000 | MKH2-02-002-PR-1230 | 0.00245815908030055 | 0.245815908030055 | E4130 | 1 | Long |
| CON-LEG101-PR-3370 |  | Staging Time for Modular Industrial Switches for main pole | 15d | 2026-06-10 A | 2026-06-10 A | CON-LEG101-PR-3350, CON-LEG101-PR-3870, CON-LEG101-PR-3910 | 100% | 2027-01-09 | 2027-01-25 | Engineer & Technician [64 h] |  |  | MKH2-02-002-PR-4710 | 0 | 0 | E4150 | 1 | Long |
|  | 2 | **8POE ports Industrial Switches for remote poles** |  | 2026-03-30 | 2026-05-05 |  |  |  |  |  |  |  |  |  |  |  |  |  |
| CON-LEG101-PR-3380 |  | PO for 8POE ports Industrial Switches for remote poles | 5d | 2026-03-30 A | 2026-03-30 A | CON-LEG101-SB-3450 SS | 100% | 2026-04-04 | 2026-04-08 | Engineer & Technician [80 h] |  |  | MKH2-02-002-PR-1030 | 0 | 0 | E4160 | 1 | Long |
| CON-LEG101-PR-3390 |  | Material Fabrication for 8POE ports Industrial Switches for remote poles | 70d | 2026-04-04 A | 2026-04-30 A | CON-LEG101-PR-3330 SS, CON-LEG101-PR-3380 | 100% | 2026-08-24 | 2026-11-14 | Labor [400 h] |  |  | MKH2-02-002-PR-1130 | 0 | 0 | E4170 | 1 | Long |
| CON-LEG101-PR-3400 |  | Material Delivery for 8POE ports Industrial Switches for remote poles | 20d | 2026-05-02 A | 2026-05-04 A | CON-LEG101-PR-3390 | 100% | 2026-10-20 | 2026-11-11 | Labor [535 h]; 8POE ports Industrial Switches for remote poles [1.2] | 12,000 | 12,000 | MKH2-02-002-PR-1230 | 0.00245815908030055 | 0.245815908030055 | E4180 | 1 | Long |
| CON-LEG101-PR-3410 |  | Staging Time for 8POE ports Industrial Switches for remote poles | 20d | 2026-05-05 A | 2026-05-05 A | CON-LEG101-PR-3400 | 100% | 2026-11-12 | 2026-12-05 | Engineer & Technician [64 h] |  |  | MKH2-02-002-PR-4710 | 0 | 0 | E4190 | 1 | Long |
|  | 3 | **Core Switch** |  | 2026-03-30 | 2026-05-05 |  |  |  |  |  |  |  |  |  |  |  |  |  |
| CON-LEG101-PR-3420 |  | PO for Core Switch | 5d | 2026-03-30 A | 2026-03-30 A | CON-LEG101-SB-3430 SS | 100% | 2026-04-04 | 2026-04-08 | Engineer & Technician [80 h] |  |  | MKH2-02-002-PR-1030 | 0 | 0 | E4200 | 1 | Long |
| CON-LEG101-PR-3430 |  | Material Fabrication for Core Switch | 75d | 2026-04-04 A | 2026-04-30 A | CON-LEG101-PR-3390, CON-LEG101-PR-3420 | 100% | 2026-11-15 | 2027-02-14 | Labor [400 h] |  |  | MKH2-02-002-PR-1130 | 0 | 0 | E4210 | 1 | Long |
| CON-LEG101-PR-3440 |  | Material Delivery for Core Switch | 15d | 2026-05-02 A | 2026-05-04 A | CON-LEG101-PR-3430, CON-LEG101-PR-3370, CON-LEG101-PR-3410 | 100% | 2027-01-03 | 2027-01-19 | Labor [535 h]; CORE SWITCH [0.4] | 12,000 | 12,000 | MKH2-02-002-PR-1230 | 0.00245815908030055 | 0.245815908030055 | E4220 | 1 | Long |
| CON-LEG101-PR-3450 |  | Staging Time for Core Switch | 10d | 2026-05-05 A | 2026-05-05 A | CON-LEG101-PR-3440 | 100% | 2027-01-20 | 2027-01-31 | Engineer & Technician [64 h] |  |  | MKH2-02-002-PR-4710 | 0 | 0 | E4230 | 1 | Long |

| ID | WBS | Activity | Duration | Start | Finish | Predecessors | Complete | Planned start | Planned finish | Resources | Cost | Actual cost | USERTEXT | Weight 1 | Total Weight % | Mapping Sheet Activity ID | % A | JEDDAH 1 - Area Name |
| --- | --- | --- | --- | --- | --- | --- | --- | --- | --- | --- | --- | --- | --- | --- | --- | --- | --- | --- |
|  | 5 | **Access Switch 48 port** |  | 2026-03-30 | 2026-05-05 |  |  |  |  |  |  |  |  |  |  |  |  |  |
| CON-LEG101-PR-3460 |  | PO for Access Switch 48 port | 5d | 2026-03-30 A | 2026-03-30 A | CON-LEG101-SB-3470 SS | 100% | 2026-04-04 | 2026-04-08 | Engineer & Technician [80 h] |  |  | MKH2-02-002-PR-1030 | 0 | 0 | E4240 | 1 | Long |
| CON-LEG101-PR-3470 |  | Material Fabrication for Access Switch 48 port | 75d | 2026-04-04 A | 2026-04-30 A | CON-LEG101-PR-3430 SS+7d, CON-LEG101-PR-3460 | 100% | 2026-11-23 | 2027-02-23 | Labor [400 h] |  |  | MKH2-02-002-PR-1130 | 0 | 0 | E4250 | 1 | Long |
| CON-LEG101-PR-3480 |  | Material Delivery for Access Switch 48 port | 15d | 2026-05-02 A | 2026-05-04 A | CON-LEG101-PR-3470 | 100% | 2026-12-29 | 2027-01-14 | Labor [535 h]; Access Switch 48 port [0.4] | 6,000 | 6,000 | MKH2-02-002-PR-1230 | 0.00245815908030055 | 0.245815908030055 | E4260 | 1 | Long |
| CON-LEG101-PR-3490 |  | Staging Time for Access Switch 48 port | 7d | 2026-05-05 A | 2026-05-05 A | CON-LEG101-PR-3480, CON-LEG101-PR-3450 SS | 100% | 2027-01-20 | 2027-01-27 | Engineer & Technician [64 h] |  |  | MKH2-02-002-PR-4710 | 0 | 0 | E4270 | 1 | Long |
|  | 6 | **Server** |  | 2026-03-30 | 2026-05-05 |  |  |  |  |  |  |  |  |  |  |  |  |  |
| CON-LEG101-PR-3500 |  | PO for Server | 5d | 2026-03-30 A | 2026-03-30 A | CON-LEG101-SB-3490 SS | 100% | 2026-04-04 | 2026-04-08 | Engineer & Technician [80 h] |  |  | MKH2-02-002-PR-1030 | 0 | 0 | E4280 | 1 | Long |
| CON-LEG101-PR-3510 |  | Material Fabrication for Server | 77d | 2026-04-04 A | 2026-04-30 A | CON-LEG101-PR-3390 SS, CON-LEG101-PR-3500 | 100% | 2026-08-24 | 2026-11-22 | Labor [400 h] |  |  | MKH2-02-002-PR-1130 | 0 | 0 | E4290 | 1 | Long |
| CON-LEG101-PR-3520 |  | Material Delivery for Server | 18d | 2026-05-02 A | 2026-05-04 A | CON-LEG101-PR-3510 | 100% | 2026-10-26 | 2026-11-16 | Labor [535 h]; SERVER [0.6] | 39,000 | 39,000 | MKH2-02-002-PR-1230 | 0.00245815908030055 | 0.245815908030055 | E4300 | 1 | Long |
| CON-LEG101-PR-3530 |  | Staging Time for Server | 18d | 2026-05-05 A | 2026-05-05 A | CON-LEG101-PR-3520 | 100% | 2026-11-16 | 2026-12-07 | Engineer & Technician [64 h] |  |  | MKH2-02-002-PR-4710 | 0 | 0 | E4310 | 1 | Long |
|  | 7 | **Stand rack 42U- 19"** |  | 2026-03-30 | 2026-05-05 |  |  |  |  |  |  |  |  |  |  |  |  |  |
| CON-LEG101-PR-3540 |  | PO for Stand rack 42U- 19" | 6d | 2026-03-30 A | 2026-03-30 A | CON-LEG101-SB-3530 SS | 100% | 2026-04-04 | 2026-04-09 | Engineer & Technician [80 h] |  |  | MKH2-02-002-PR-1030 | 0 | 0 | E4320 | 1 | Long |
| CON-LEG101-PR-3550 |  | Material Fabrication for Stand rack 42U- 19" | 75d | 2026-04-04 A | 2026-04-30 A | CON-LEG101-PR-3510, CON-LEG101-PR-3540 | 100% | 2026-11-23 | 2027-02-23 | Labor [400 h] |  |  | MKH2-02-002-PR-1130 | 0 | 0 | E4330 | 1 | Long |
| CON-LEG101-PR-3560 |  | Material Delivery for Stand rack 42U- 19" | 15d | 2026-05-02 A | 2026-05-04 A | CON-LEG101-PR-3550 | 100% | 2026-11-17 | 2026-12-03 | Labor [535 h]; Stand rack 42U- 19" completed with ,ventilation fans, earthling connections, labeling and should be equipped with an extra capacity of 20% for future increase. [0.4] | 6,000 | 6,000 | MKH2-02-002-PR-1230 | 0.00245815908030055 | 0.245815908030055 | E4340 | 1 | Long |
| CON-LEG101-PR-3570 |  | Staging Time for Stand rack 42U- 19" | 15d | 2026-05-05 A | 2026-05-05 A | CON-LEG101-PR-3560 | 100% | 2026-12-05 | 2026-12-21 | Engineer & Technician [64 h] |  |  | MKH2-02-002-PR-4710 | 0 | 0 | E4350 | 1 | Long |
|  | 8 | **IP Outdoor CCTV POE Camera,5 MP, Metal Housing** |  | 2026-03-30 | 2026-05-05 |  |  |  |  |  |  |  |  |  |  |  |  |  |
| CON-LEG101-PR-3580 |  | PO for IP Outdoor CCTV POE Camera,5 MP, Metal Housing | 5d | 2026-03-30 A | 2026-03-30 A | CON-LEG101-SB-3630 SS | 100% | 2026-04-04 | 2026-04-08 | Engineer & Technician [80 h] |  |  | MKH2-02-002-PR-1030 | 0 | 0 | E4360 | 1 | Long |
| CON-LEG101-PR-3590 |  | Material Fabrication for IP Outdoor CCTV POE Camera,5 MP, Metal Housing | 75d | 2026-04-04 A | 2026-04-30 A | CON-LEG101-PR-3510 SS, CON-LEG101-PR-3580 | 100% | 2026-08-24 | 2026-11-19 | Labor [400 h] |  |  | MKH2-02-002-PR-1130 | 0 | 0 | E4370 | 1 | Long |
| CON-LEG101-PR-3600 |  | Material Delivery for IP Outdoor CCTV POE Camera,5 MP, Metal Housing | 15d | 2026-05-02 A | 2026-05-04 A | CON-LEG101-PR-3590 | 100% | 2026-10-25 | 2026-11-10 | Labor [535 h]; IP Outdoor CCTV POE Camera,5 MP, Metal Housing [5.6] | 28,000 | 28,000 | MKH2-02-002-PR-1230 | 0.00245815908030055 | 0.245815908030055 | E4380 | 1 | Long |
| CON-LEG101-PR-3610 |  | Staging Time for IP Outdoor CCTV POE Camera,5 MP, Metal Housing | 15d | 2026-05-05 A | 2026-05-05 A | CON-LEG101-PR-3600 | 100% | 2026-11-11 | 2026-11-28 | Engineer & Technician [64 h] |  |  | MKH2-02-002-PR-4710 | 0 | 0 | E4390 | 1 | Long |
|  | 9 | **Outdoor PTZ with IR, HDTV 1080 and 31x optical, 12x digital** |  | 2026-03-30 | 2026-05-05 |  |  |  |  |  |  |  |  |  |  |  |  |  |
| CON-LEG101-PR-3620 |  | PO for Outdoor PTZ with IR, HDTV 1080 and 31x optical, 12x digital | 5d | 2026-03-30 A | 2026-03-30 A | CON-LEG101-SB-3550 SS | 100% | 2026-04-04 | 2026-04-08 | Engineer & Technician [80 h] |  |  | MKH2-02-002-PR-1030 | 0 | 0 | E4400 | 1 | Long |
| CON-LEG101-PR-3630 |  | Material Fabrication for Outdoor PTZ with IR, HDTV 1080 and 31x optical, 12x digital | 90d | 2026-04-04 A | 2026-04-30 A | CON-LEG101-PR-3590 SS, CON-LEG101-PR-3620 | 100% | 2026-08-24 | 2026-12-07 | Labor [400 h] |  |  | MKH2-02-002-PR-1130 | 0 | 0 | E4410 | 1 | Long |
| CON-LEG101-PR-3640 |  | Material Delivery for Outdoor PTZ with IR, HDTV 1080 and 31x optical, 12x digital | 15d | 2026-05-02 A | 2026-05-04 A | CON-LEG101-PR-3630, CON-LEG101-PR-3610 | 100% | 2026-11-29 | 2026-12-15 | Labor [535 h]; "Outdoor PTZ with IR, HDTV 1080 and 31x optical, 12x digital, total 372x zoom, H264/265 with Motion JPEG. [1.4] | 49,000 | 49,000 | MKH2-02-002-PR-1230 | 0.00245815908030055 | 0.245815908030055 | E4420 | 1 | Long |
| CON-LEG101-PR-3650 |  | Staging Time for Outdoor PTZ with IR, HDTV 1080 and 31x optical, 12x digital | 10d | 2026-05-05 A | 2026-05-05 A | CON-LEG101-PR-3640 | 100% | 2026-12-16 | 2026-12-27 | Engineer & Technician [64 h] |  |  | MKH2-02-002-PR-4710 | 0 | 0 | E4430 | 1 | Long |

| ID | WBS | Activity | Duration | Start | Finish | Predecessors | Complete | Planned start | Planned finish | Resources | Cost | Actual cost | USERTEXT | Weight 1 | Total Weight % | Mapping Sheet Activity ID | % A | JEDDAH 1 - Area Name |
| --- | --- | --- | --- | --- | --- | --- | --- | --- | --- | --- | --- | --- | --- | --- | --- | --- | --- | --- |
|  | 10 | **Security workstation with 1 x 19" LED screen** |  | 2026-03-30 | 2026-05-05 |  |  |  |  |  |  |  |  |  |  |  |  |  |
| CON-LEG101-PR-3660 |  | PO for Security workstation with 1 x 19" LED screen | 5d | 2026-03-30 A | 2026-03-30 A | CON-LEG101-SB-3570 SS | 100% | 2026-04-04 | 2026-04-08 | Engineer & Technician [80 h] |  |  | MKH2-02-002-PR-1030 | 0 | 0 | E4440 | 1 | Long |
| CON-LEG101-PR-3670 |  | Material Fabrication for Security workstation with 1 x 19" LED screen | 90d | 2026-04-04 A | 2026-04-30 A | CON-LEG101-PR-3550 SS, CON-LEG101-PR-3660 | 100% | 2026-11-23 | 2027-03-13 | Labor [400 h] |  |  | MKH2-02-002-PR-1130 | 0 | 0 | E4450 | 1 | Long |
| CON-LEG101-PR-3680 |  | Material Delivery for Security workstation with 1 x 19" LED screen | 10d | 2026-05-02 A | 2026-05-04 A | CON-LEG101-PR-3670 | 100% | 2026-11-24 | 2026-12-05 | Labor [535 h]; Security workstation with 1 x 19" LED screen including graphic video cards, software, license and interfaces required for the system [0.2] | 5,000 | 5,000 | MKH2-02-002-PR-1230 | 0.00245815908030055 | 0.245815908030055 | E4460 | 1 | Long |
| CON-LEG101-PR-3690 |  | Staging Time for Security workstation with 1 x 19" LED screen | 10d | 2026-05-05 A | 2026-05-05 A | CON-LEG101-PR-3680 | 100% | 2026-12-06 | 2026-12-16 | Engineer & Technician [64 h] |  |  | MKH2-02-002-PR-4710 | 0 | 0 | E4470 | 1 | Long |
|  | 11 | **Horizontal Power Distribution Unit (min 8 outlets)** |  | 2026-03-30 | 2026-05-05 |  |  |  |  |  |  |  |  |  |  |  |  |  |
| CON-LEG101-PR-3700 |  | PO for Horizontal Power Distribution Unit (min 8 outlets) | 5d | 2026-03-30 A | 2026-03-30 A | CON-LEG101-SB-3670 SS | 100% | 2026-04-04 | 2026-04-08 | Engineer & Technician [80 h] |  |  | MKH2-02-002-PR-1030 | 0 | 0 | E4480 | 1 | Long |
| CON-LEG101-PR-3710 |  | Material Fabrication for Horizontal Power Distribution Unit (min 8 outlets) | 90d | 2026-04-04 A | 2026-04-30 A | CON-LEG101-PR-3670 SS, CON-LEG101-PR-3700 | 100% | 2026-11-23 | 2027-03-13 | Labor [400 h] |  |  | MKH2-02-002-PR-1130 | 0 | 0 | E4490 | 1 | Long |
| CON-LEG101-PR-3720 |  | Material Delivery for Horizontal Power Distribution Unit (min 8 outlets) | 20d | 2026-05-02 A | 2026-05-04 A | CON-LEG101-PR-3710 | 100% | 2026-11-24 | 2026-12-16 | Labor [535 h]; Horizontal Power Distribution Unit (min 8 outlets) [0.4] | 4,000 | 4,000 | MKH2-02-002-PR-1230 | 0.00245815908030055 | 0.245815908030055 | E4500 | 1 | Long |
| CON-LEG101-PR-3730 |  | Staging Time for Horizontal Power Distribution Unit (min 8 outlets) | 15d | 2026-05-02 A | 2026-05-05 A | CON-LEG101-PR-3720, CON-LEG101-PR-3490, CON-LEG101-PR-3570, CON-LEG101-PR-3690 | 100% | 2027-01-26 | 2027-02-16 | Engineer & Technician [64 h] |  |  | MKH2-02-002-PR-4710 | 0 | 0 | E4510 | 1 | Long |
|  | 12 | **35 Meters mono pole with Double Platform for Access Points** |  | 2026-03-30 | 2026-05-04 |  |  |  |  |  |  |  |  |  |  |  |  |  |
| CON-LEG101-PR-3800 |  | PO for 35 Meters mono pole with Double Platform for Access Points | 5d | 2026-03-30 A | 2026-03-30 A | CON-LEG101-SB-3690 SS | 100% | 2026-04-04 | 2026-04-08 | Engineer & Technician [80 h] |  |  | MKH2-02-002-PR-1030 | 0 | 0 | E4610 | 1 | Long |
| CON-LEG101-PR-3810 |  | Material Fabrication for 35 Meters mono pole with Double Platform for Access Points | 90d | 2026-04-04 A | 2026-04-30 A | CON-LEG101-PR-3710 SS, CON-LEG101-PR-3800 | 100% | 2026-11-23 | 2027-03-13 | Labor [400 h] |  |  | MKH2-02-002-PR-1130 | 0 | 0 | E4620 | 1 | Long |
| CON-LEG101-PR-3820 |  | Material Delivery for 35 Meters mono pole with Double Platform for Access Points | 20d | 2026-05-02 A | 2026-05-04 A | CON-LEG101-PR-3810 | 100% | 2026-10-24 | 2026-11-15 | Labor [535 h]; "35 Meters mono pole with Double Platform for Access Points including : [0.2] | 32,000 | 32,000 | MKH2-02-002-PR-1230 | 0.00245815908030055 | 0.245815908030055 | E4630 | 1 | Long |
| CON-LEG101-PR-3830 |  | Staging Time for 35 Meters mono pole with Double Platform for Access Points | 20d | 2026-05-02 A | 2026-05-04 A | CON-LEG101-PR-3820 | 100% | 2026-11-16 | 2026-12-08 | Engineer & Technician [64 h] |  |  | MKH2-02-002-PR-4710 | 0 | 0 | E4640 | 1 | Long |
|  | 13 | **25 Meters pole for CCTV Cameras** |  | 2026-03-30 | 2026-05-04 |  |  |  |  |  |  |  |  |  |  |  |  |  |
| CON-LEG101-PR-3840 |  | PO for 25 Meters pole for CCTV Cameras | 5d | 2026-03-30 A | 2026-03-30 A | CON-LEG101-SB-3710 SS | 100% | 2026-04-04 | 2026-04-08 | Engineer & Technician [80 h] |  |  | MKH2-02-002-PR-1030 | 0 | 0 | E4650 | 1 | Long |
| CON-LEG101-PR-3850 |  | Material Fabrication for 25 Meters pole for CCTV Cameras | 90d | 2026-04-04 A | 2026-04-30 A | CON-LEG101-PR-3630 SS+10d, CON-LEG101-PR-3840 | 100% | 2026-09-05 | 2026-12-19 | Labor [400 h] |  |  | MKH2-02-002-PR-1130 | 0 | 0 | E4660 | 1 | Long |
| CON-LEG101-PR-3860 |  | Material Delivery for 25 Meters pole for CCTV Cameras | 15d | 2026-05-02 A | 2026-05-04 A | CON-LEG101-PR-3850 | 100% | 2026-10-24 | 2026-11-09 | Labor [535 h]; "25 Meters pole for CCTV Cameras including : [1.2] | 156,000 | 156,000 | MKH2-02-002-PR-1230 | 0.00245815908030055 | 0.245815908030055 | E4670 | 1 | Long |
| CON-LEG101-PR-3870 |  | Staging Time for 25 Meters pole for CCTV Cameras | 15d | 2026-05-02 A | 2026-05-04 A | CON-LEG101-PR-3860 | 100% | 2026-11-10 | 2026-11-26 | Engineer & Technician [64 h] |  |  | MKH2-02-002-PR-4710 | 0 | 0 | E4680 | 1 | Long |
|  | 14 | **Short Range wireless point to point wireless bridge** |  | 2026-03-30 | 2026-05-04 |  |  |  |  |  |  |  |  |  |  |  |  |  |
| CON-LEG101-PR-3880 |  | PO for Short Range wireless point to point wireless bridge | 5d | 2026-03-30 A | 2026-03-30 A | CON-LEG101-SB-3730 SS | 100% | 2026-04-04 | 2026-04-08 | Engineer & Technician [80 h] |  |  | MKH2-02-002-PR-1030 | 0 | 0 | E4690 | 1 | Long |
| CON-LEG101-PR-3890 |  | Material Fabrication for Short Range wireless point to point wireless bridge | 90d | 2026-04-04 A | 2026-04-30 A | CON-LEG101-PR-3850 SS, CON-LEG101-PR-3880 | 100% | 2026-09-05 | 2026-12-19 | Labor [400 h] |  |  | MKH2-02-002-PR-1130 | 0 | 0 | E4700 | 1 | Long |
| CON-LEG101-PR-3900 |  | Material Delivery for Short Range wireless point to point wireless bridge | 15d | 2026-05-02 A | 2026-05-04 A | CON-LEG101-PR-3890 | 100% | 2026-11-24 | 2026-12-10 | Labor [535 h]; Short Range wireless point to point wireless bridge [2.4] | 31,200 | 31,200 | MKH2-02-002-PR-1230 | 0.00245815908030055 | 0.245815908030055 | E4710 | 1 | Long |
| CON-LEG101-PR-3910 |  | Staging Time for Short Range wireless point to point wireless bridge | 10d | 2026-05-02 A | 2026-05-04 A | CON-LEG101-PR-3900 | 100% | 2026-12-12 | 2026-12-22 | Engineer & Technician [64 h] |  |  | MKH2-02-002-PR-4710 | 0 | 0 | E4720 | 1 | Long |

| ID | WBS | Activity | Duration | Start | Finish | Predecessors | Complete | Planned start | Planned finish | Resources | Cost | Actual cost | USERTEXT | Weight 1 | Total Weight % | Mapping Sheet Activity ID | % A | JEDDAH 1 - Area Name |
| --- | --- | --- | --- | --- | --- | --- | --- | --- | --- | --- | --- | --- | --- | --- | --- | --- | --- | --- |
|  | 6 | **Landscape Works** |  | 2026-01-01 | 2027-06-14 |  |  |  |  |  |  |  |  |  |  |  |  |  |
|  | 1 | **HDPE Pipes** |  | 2026-01-01 | 2026-02-21 |  |  |  |  |  |  |  |  |  |  |  |  |  |
| CON-LEG101-PR-3920 |  | PO for HDPE Pipes | 7d | 2026-01-01 A | 2026-01-01 A | CON-LEG101-SB-4040 | 100% | 2026-01-07 | 2026-01-14 | Engineer & Technician [80 h] |  |  | MKH2-02-002-PR-2350 | 0 | 0 | E4730 | 1 | Long |
| CON-LEG101-PR-3930 |  | Material Fabrication for HDPE Pipes | 60d | 2026-01-03 A | 2026-02-09 A | CON-LEG101-PR-1960, CON-LEG101-PR-3920 | 100% | 2026-07-25 | 2026-10-04 | Labor [400 h] |  |  | MKH2-02-002-PR-2360 | 0 | 0 | E4740 | 1 | Long |
| CON-LEG101-PR-3940 |  | Material Delivery for HDPE Pipes | 15d | 2026-02-10 A | 2026-02-21 A | CON-LEG101-PR-3930, CON-LEG101-PR-3900, CON-LEG101-PR-3910 FF, CON-LEG101-PR-3910 | 100% | 2027-01-10 | 2027-01-26 | Pipe line O.D 50 mm PN 10, in depth 0 to 1.5 m [40]; Pipe line O.D 32 mm PN 10, in depth 0 to 1.5 m [24]; Pipe line O.D 25 mm PN 10, in depth 0 to 1.5 m [206]; Labor [535 h] | 28,800 | 28,800 | MKH2-02-002-PR-2370 | 8.40139651145538E-005 | 0.00840139651145538 | E4750 | 1 | Long |
| CON-LEG101-PR-3980 |  | Staging Time for HDPE Pipes | 10d | 2026-02-12 A | 2026-02-21 A | CON-LEG101-PR-3940 | 100% | 2027-01-27 | 2027-02-07 | Engineer & Technician [64 h] |  |  |  |  |  |  | 1 | Long |
|  | 9 | **Curbs and edging** |  | 2026-02-01 | 2026-07-28 |  |  |  |  |  |  |  |  |  |  |  |  |  |
| CON-LEG101-PR-2890 |  | PO for Curbs and edging | 5d | 2026-02-01 A | 2026-02-02 A | CON-LEG101-SB-4190 | 100% | 2026-03-04 | 2026-03-09 | Engineer & Technician [80 h] |  |  | MKH2-02-002-PR-1080 | 0 | 0 | E3360 | 1 | Long |
| CON-LEG101-PR-2950 |  | Material Fabrication for Curbs and edging | 60d | 2026-04-11 A | 2026-07-25 A | CON-LEG101-PR-3930, CON-LEG101-PR-2890 | 100% | 2026-04-23 | 2026-07-07 | Labor [400 h] |  |  | MKH2-02-002-PR-1180 | 0 | 0 | E3440 | 1 | Long |
| CON-LEG101-PR-3010 |  | Material Delivery for Curbs and edging | 10d | 2026-07-01 A | 2026-07-26 A | CON-LEG101-PR-2950, CON-LEG101-PR-3980 | 100% | 2026-12-23 | 2027-01-03 | Planting curb edge, size 500 x 250 x 100 mm. [68]; Labor [535 h] | 8,160 | 8,160 | MKH2-02-002-PR-1280 | 0.00245815908030055 | 0.245815908030055 | E3520 | 1 | Long |
| CON-LEG101-PR-3070 |  | Staging Time for Curbs and edging | 10d | 2026-07-02 A | 2026-07-28 A | CON-LEG101-PR-3010 | 100% | 2027-01-04 | 2027-01-14 | Engineer & Technician [64 h] |  |  | MKH2-02-002-PR-4760 | 0 | 0 | E3600 | 1 | Long |
|  | 4 | **Electrical Solenoid Valve** |  | 2026-03-25 | 2026-10-13 |  |  |  |  |  |  |  |  |  |  |  |  |  |
| CON-LEG101-PR-2840 |  | PO for Electrical Solenoid Valve | 5d | 2026-03-25 A | 2026-03-25 A | CON-LEG101-SB-4050 | 100% | 2026-04-04 | 2026-04-08 | Engineer & Technician [80 h] |  |  | MKH2-02-002-PR-1030 | 0 | 0 | E3310 | 1 | Long |
| CON-LEG101-PR-2900 |  | Material Fabrication for Electrical Solenoid Valve | 60d | 2026-04-11 A | 2026-10-05 A | CON-LEG101-PR-2950 SS+10d, CON-LEG101-PR-2840 | 100% | 2026-05-05 | 2026-07-19 | Labor [400 h] |  |  | MKH2-02-002-PR-1130 | 0 | 0 | E3390 | 0.6 | Long |
| CON-LEG101-PR-2960 |  | Material Delivery for Electrical Solenoid Valve | 10d | 2026-10-06 A | 2026-10-10 A | CON-LEG101-PR-2900 | 100% | 2026-11-11 | 2026-11-22 | Supply and installation of Electrical Solenoid Valve ( 1") inside PVC box with all accessories( pressure regulator module, manual bleeding, expedient for TSE water, in line filter, manual valve, valve box with cover, and all other accessories necessary to [1]; Supply and installation of Electrical Solenoid Valve ( 1.5") inside PVC box with all accessories( pressure regulator module, manual bleeding, expedient for TSE water, in line filter, manual valve, valve box with cover, and all other accessories necessary [0.6]; Labor [535 h] | 11,000 | 11,000 | MKH2-02-002-PR-1230 | 0.00245815908030055 | 0.245815908030055 | E3470 |  | Long |
| CON-LEG101-PR-3020 |  | Staging Time for Electrical Solenoid Valve | 10d | 2026-10-11 A | 2026-10-13 A | CON-LEG101-PR-2960, CON-LEG101-PR-3070 | 100% | 2027-01-18 | 2027-01-28 | Engineer & Technician [64 h] |  |  | MKH2-02-002-PR-4710 | 0 | 0 | E3550 |  | Long |
|  | 5 | **Quick coupler valve** |  | 2026-03-25 | 2026-10-13 |  |  |  |  |  |  |  |  |  |  |  |  |  |
| CON-LEG101-PR-2850 |  | PO for Quick coupler valve | 5d | 2026-03-25 A | 2026-03-25 A | CON-LEG101-SB-4070 | 100% | 2026-04-04 | 2026-04-08 | Engineer & Technician [80 h] |  |  | MKH2-02-002-PR-1040 | 0 | 0 | E3320 | 1 | Long |
| CON-LEG101-PR-2910 |  | Material Fabrication for Quick coupler valve | 60d | 2026-04-11 A | 2026-10-05 A | CON-LEG101-PR-2900 SS, CON-LEG101-PR-2850 | 100% | 2026-05-05 | 2026-07-19 | Labor [400 h] |  |  | MKH2-02-002-PR-1140 | 0 | 0 | E3400 | 0.6 | Long |
| CON-LEG101-PR-2970 |  | Material Delivery for Quick coupler valve | 7d | 2026-10-06 A | 2026-10-10 A | CON-LEG101-PR-2910, CON-LEG101-PR-3020 | 100% | 2027-01-30 | 2027-02-06 | Supply and installation of 1" quick coupler valve inside PVC box [1.6]; Labor [535 h] | 7,200 | 7,200 | MKH2-02-002-PR-1240 | 0.00245815908030055 | 0.245815908030055 | E3480 |  | Long |
| CON-LEG101-PR-3030 |  | Staging Time for Quick coupler valve | 7d | 2026-10-11 A | 2026-10-13 A | CON-LEG101-PR-2970 | 100% | 2027-02-07 | 2027-02-18 | Engineer & Technician [64 h] |  |  | MKH2-02-002-PR-4720 | 0 | 0 | E3560 |  | Long |
|  | 2 | **Flush valve** |  | 2026-03-25 | 2026-10-13 |  |  |  |  |  |  |  |  |  |  |  |  |  |
| CON-LEG101-PR-3080 |  | PO for Flush valve | 5d | 2026-03-25 A | 2026-03-25 A | CON-LEG101-SB-4090 | 100% | 2026-04-04 | 2026-04-08 | Engineer & Technician [80 h] |  |  | MKH2-02-002-PR-1040 | 0 | 0 | E3620 | 1 | Long |
| CON-LEG101-PR-3090 |  | Material Fabrication for Flush valve | 60d | 2026-04-11 A | 2026-10-05 A | CON-LEG101-PR-2910 SS, CON-LEG101-PR-3080 | 100% | 2026-05-05 | 2026-07-19 | Labor [400 h] |  |  | MKH2-02-002-PR-1140 | 0 | 0 | E3630 | 0.6 | Long |
| CON-LEG101-PR-3100 |  | Material Delivery for Flush valve | 10d | 2026-10-06 A | 2026-10-10 A | CON-LEG101-PR-3090, CON-LEG101-PR-3030 | 100% | 2027-02-20 | 2027-03-03 | "Supply and installation of a flush valve at the end of ½-inch drip irrigation lines, including all necessary accessories such as protective box and fittings, to complete the work as required and in accordance with the supervising engineer’s instructions. [10]; Labor [535 h] | 20,000 | 20,000 | MKH2-02-002-PR-1240 | 0.00245815908030055 | 0.245815908030055 | E3640 |  | Long |
| CON-LEG101-PR-3110 |  | Staging Time for Flush valve | 10d | 2026-10-11 A | 2026-10-13 A | CON-LEG101-PR-3100 | 100% | 2027-03-04 | 2027-03-15 | Engineer & Technician [64 h] |  |  | MKH2-02-002-PR-4720 | 0 | 0 | E3650 |  | Long |

| ID | WBS | Activity | Duration | Start | Finish | Predecessors | Complete | Planned start | Planned finish | Total float | Free float | Resources | Cost | Actual cost | USERTEXT | Weight 1 | Total Weight % | Mapping Sheet Activity ID | % A | JEDDAH 1 - Area Name |
| --- | --- | --- | --- | --- | --- | --- | --- | --- | --- | --- | --- | --- | --- | --- | --- | --- | --- | --- | --- | --- |
|  | 6 | **Irrigation controller** |  | 2026-03-25 | 2026-10-13 |  |  |  |  |  |  |  |  |  |  |  |  |  |  |  |
| CON-LEG101-PR-2860 |  | PO for Irrigation controller | 5d | 2026-03-25 A | 2026-03-25 A | CON-LEG101-SB-4110 | 100% | 2026-04-04 | 2026-04-08 |  |  | Engineer & Technician [80 h] |  |  | MKH2-02-002-PR-1050 | 0 | 0 | E3330 | 1 | Long |
| CON-LEG101-PR-2920 |  | Material Fabrication for Irrigation controller | 60d | 2026-04-11 A | 2026-10-05 A | CON-LEG101-PR-3090 SS, CON-LEG101-PR-2860 | 100% | 2026-05-05 | 2026-07-19 |  |  | Labor [420 h] |  |  | MKH2-02-002-PR-1150 | 0 | 0 | E3410 | 0.6 | Long |
| CON-LEG101-PR-2980 |  | Material Delivery for Irrigation controller | 10d | 2026-10-06 A | 2026-10-10 A | CON-LEG101-PR-2920, CON-LEG101-PR-3110 | 100% | 2027-03-16 | 2027-03-27 |  |  | Supply and installation of Advanced Irrigation controller subject to client approval, can connect with Centarl Control system and cabable to integrate with Smart City systems,BMS or Scada system ,Can record the real flow rate per stations, [0.2]; Labor [535 h] | 70,000 | 70,000 | MKH2-02-002-PR-1250 | 0.00245815908030055 | 0.245815908030055 | E3490 |  | Long |
| CON-LEG101-PR-3040 |  | Staging Time for Irrigation controller | 10d | 2026-10-11 A | 2026-10-13 A | CON-LEG101-PR-2980 | 100% | 2027-03-28 | 2027-04-07 |  |  | Engineer & Technician [64 h] |  |  | MKH2-02-002-PR-4730 | 0 | 0 | E3570 |  | Long |
|  | 3 | **Decoder for valve** |  | 2026-03-25 | 2026-10-13 |  |  |  |  |  |  |  |  |  |  |  |  |  |  |  |
| CON-LEG101-PR-3120 |  | PO for Decoder for valve | 5d | 2026-03-25 A | 2026-03-25 A | CON-LEG101-SB-4130 | 100% | 2026-04-04 | 2026-04-08 |  |  | Engineer & Technician [80 h] |  |  | MKH2-02-002-PR-1050 | 0 | 0 | E3660 | 1 | Long |
| CON-LEG101-PR-3130 |  | Material Fabrication for Decoder for valve | 60d | 2026-04-11 A | 2026-10-05 A | CON-LEG101-PR-2920 SS, CON-LEG101-PR-3120 | 100% | 2026-05-05 | 2026-07-19 |  |  | Labor [420 h] |  |  | MKH2-02-002-PR-1150 | 0 | 0 | E3670 | 0.6 | Long |
| CON-LEG101-PR-3140 |  | Material Delivery for Decoder for valve | 13d | 2026-10-06 A | 2026-10-10 A | CON-LEG101-PR-3130, CON-LEG101-PR-3040 | 100% | 2027-04-08 | 2027-04-22 |  |  | Supply and install single station decoder for valve connection to field controller including waterproof connectors and all other accessories necessary to complete the works in accordance with specifications and drawings (Decoder Single station ). [1.6]; Labor [800 h] | 8,000 | 8,000 | MKH2-02-002-PR-1250 | 0.00245815908030055 | 0.245815908030055 | E3680 |  | Long |
| CON-LEG101-PR-3150 |  | Staging Time for Decoder for valve | 10d | 2026-10-11 A | 2026-10-13 A | CON-LEG101-PR-3140 | 100% | 2027-04-24 | 2027-05-04 |  |  | Engineer & Technician [64 h] |  |  | MKH2-02-002-PR-4730 | 0 | 0 | E3690 |  | Long |
|  | 7 | **Decoder Cables** |  | 2026-03-25 | 2026-10-13 |  |  |  |  |  |  |  |  |  |  |  |  |  |  |  |
| CON-LEG101-PR-2870 |  | PO for Decoder Cables | 5d | 2026-03-25 A | 2026-03-25 A | CON-LEG101-SB-4150 | 100% | 2026-04-04 | 2026-04-08 |  |  | Engineer & Technician [80 h] |  |  | MKH2-02-002-PR-1060 | 0 | 0 | E3340 | 1 | Long |
| CON-LEG101-PR-2930 |  | Material Fabrication for Decoder Cables | 60d | 2026-04-11 A | 2026-10-05 A | CON-LEG101-PR-3130 SS, CON-LEG101-PR-2870 | 100% | 2026-05-05 | 2026-07-19 |  |  | Labor [420 h] |  |  | MKH2-02-002-PR-1160 | 0 | 0 | E3420 | 0.6 | Long |
| CON-LEG101-PR-2990 |  | Material Delivery for Decoder Cables | 10d | 2026-10-06 A | 2026-10-10 A | CON-LEG101-PR-2930 | 100% | 2026-11-11 | 2026-11-22 |  |  | Supply and installation of Decoder cables 12 AWG between valves and controllers, The cables shall be pulled through 32? UPVC conduit and inspection 10" round valve box every 100 meters, as per standard specification and drawings [645]; Labor [535 h] | 38,700 | 38,700 | MKH2-02-002-PR-1260 | 0.00245815908030055 | 0.245815908030055 | E3500 |  | Long |
| CON-LEG101-PR-3050 |  | Staging Time for Decoder Cables | 10d | 2026-10-11 A | 2026-10-13 A | CON-LEG101-PR-2990, CON-LEG101-PR-3150 | 100% | 2027-05-05 | 2027-05-20 |  |  | Engineer & Technician [64 h] |  |  | MKH2-02-002-PR-4740 | 0 | 0 | E3580 |  | Long |
|  | 8 | **Shrubs And Ground Cover** |  | 2026-03-25 | 2027-06-14 |  |  |  |  |  |  |  |  |  |  |  |  |  |  |  |
| CON-LEG101-PR-2880 |  | PO for agricultural soil | 5d | 2026-03-25 A | 2026-03-25 A | CON-LEG101-SB-4170 | 100% | 2026-04-08 | 2026-04-14 |  |  | Engineer & Technician [80 h] |  |  | MKH2-02-002-PR-1070 | 0 | 0 | E3350 | 1 | Long |
| CON-LEG101-PR-3000 |  | Material Delivery for agricultural soil | 90d | 2027-02-08 | 2027-06-02 | CON-LEG101-PR-2880, CON-LEG101-PR-2980, CON-LEG101-PR-3050 |  |  |  | 87d | 0d | Ref. SH-01, Golden daisy bush euryops pectinatus [1823]; Labor [700 h] | 200,530 |  | MKH2-02-002-PR-1270 | 0.00245815908030055 | 0.245815908030055 | E3510 |  | Long |
| CON-LEG101-PR-3060 |  | Staging Time for agricultural soil | 10d | 2027-06-03 | 2027-06-14 | CON-LEG101-PR-3000, CON-LEG101-PR-3830 |  |  |  | 87d | 135.65d | Engineer & Technician [64 h] |  |  | MKH2-02-002-PR-4750 | 0 | 0 | E3590 |  | Long |
|  | 4 | **Bridge Works** |  | 2026-02-01 | 2027-04-06 |  |  |  |  |  |  |  |  |  |  |  |  |  |  |  |
|  | 3 | **Prestressing Strands** |  | 2026-02-11 | 2026-03-26 |  |  |  |  |  |  |  |  |  |  |  |  |  |  |  |
| CON-LEG101-PR-2120 |  | PO for Prestressing Strands | 7d | 2026-02-11 A | 2026-02-12 A | CON-LEG101-SB-3750 | 100% | 2026-02-11 | 2026-02-18 |  |  | Engineer & Technician [80 h] |  |  | MKH2-02-002-PR-2290 | 0 | 0 | E2420 | 1 | Long |
| CON-LEG101-PR-2130 |  | Material for Prestressing Strands | 75d | 2026-02-12 A | 2026-03-17 A | CON-LEG101-PR-2120 | 100% | 2026-02-18 | 2026-05-21 |  |  | Engineer & Technician |  |  | MKH2-02-002-PR-2300 | 0 | 0 | E2430 | 1 | Long |
| CON-LEG101-PR-2140 |  | Material Delivery for Prestressing Strands | 15d | 2026-03-10 A | 2026-03-25 A | CON-LEG101-PR-2130 | 100% | 2026-05-26 | 2026-06-16 |  |  | "Reinforced precast prestressed concrete [49.6]; "PRESTRESSING STRANDS [4]; Labor [535 h] | 155,200 | 155,200 | MKH2-02-002-PR-2310 | 0.000530307539527147 | 0.0530307539527147 | E2440 | 1 | Long |
| CON-LEG101-PR-2400 |  | Staging Time for Prestressing Strands | 20d | 2026-03-11 A | 2026-03-26 A | CON-LEG101-PR-2140 | 100% | 2026-06-17 | 2026-07-09 |  |  | Engineer & Technician [128 h] |  |  |  |  |  |  | 1 | Long |

| ID | WBS | Activity | Duration | Start | Finish | Predecessors | Complete | Remaining | Planned start | Planned finish | Total float | Free float | Resources | Cost | Actual cost | USERTEXT | Weight 1 | Total Weight % | Mapping Sheet Activity ID | % A | JEDDAH 1 - Area Name |
| --- | --- | --- | --- | --- | --- | --- | --- | --- | --- | --- | --- | --- | --- | --- | --- | --- | --- | --- | --- | --- | --- |
|  | 6 | **Bridge Bearings** |  | 2026-02-11 | 2026-04-21 |  |  |  |  |  |  |  |  |  |  |  |  |  |  |  |  |
| CON-LEG101-PR-2180 |  | PO for Bridge Bearings | 5d | 2026-02-11 A | 2026-02-12 A | CON-LEG101-SB-3790 | 100% |  | 2026-02-11 | 2026-02-16 |  |  | Engineer & Technician [80 h] |  |  | MKH2-02-002-PR-2500 | 0 | 0 | E2480 | 1 | Long |
| CON-LEG101-PR-2190 |  | Material Fabrication for Bridge Bearings | 75d | 2026-02-12 A | 2026-04-02 A | CON-LEG101-PR-2180 | 100% |  | 2026-02-18 | 2026-05-21 |  |  | Labor [420 h] |  |  | MKH2-02-002-PR-2510 | 0 | 0 | E2490 | 1 | Long |
| CON-LEG101-PR-2200 |  | Material Delivery for Bridge Bearings | 15d | 2026-04-19 A | 2026-04-20 A | CON-LEG101-PR-2190, CON-LEG101-PR-2400 | 100% |  | 2026-04-19 | 2026-05-05 |  |  | "BRIDGE BEARINGS [2.4]; Labor [535 h] | 12,000 | 12,000 | MKH2-02-002-PR-2520 | 0.00908283008018919 | 0.908283008018919 | E2500 | 1 | Long |
| CON-LEG101-PR-2240 |  | Staging Time for Bridge Bearings | 20d | 2026-04-21 A | 2026-04-21 A | CON-LEG101-PR-2200 | 100% |  | 2026-05-06 | 2026-06-02 |  |  | Engineer & Technician [64 h] |  |  | MKH2-02-002-PR-4850 | 0 | 0 | E2540 | 1 | Long |
|  | 8 | **Bridge Gully (Scupper) drainage** |  | 2026-03-25 | 2026-06-21 |  |  |  |  |  |  |  |  |  |  |  |  |  |  |  |  |
| CON-LEG101-PR-2370 |  | PO for Bridge Gully (Scupper) drainage | 5d | 2026-03-25 A | 2026-03-25 A | CON-LEG101-SB-3890 | 100% |  | 2026-04-04 | 2026-04-08 |  |  | Engineer & Technician [80 h] |  |  | MKH2-02-002-PR-2290 | 0 | 0 | E2670 | 1 | Long |
| CON-LEG101-PR-2380 |  | Material Fabrication for Bridge Gully (Scupper) drainage | 60d | 2026-03-28 A | 2026-06-18 A | CON-LEG101-PR-2190, CON-LEG101-PR-2370 | 100% |  | 2026-05-17 | 2026-07-30 |  |  | Labor [420 h] |  |  | MKH2-02-002-PR-2300 | 0 | 0 | E2680 | 1 | Long |
| CON-LEG101-PR-2390 |  | Material Delivery for Bridge Gully (Scupper) drainage | 20d | 2026-06-20 A | 2026-06-20 A | CON-LEG101-PR-2380, CON-LEG101-PR-2240 | 100% |  | 2026-08-05 | 2026-08-27 |  |  | "Bridge Gully (Scupper) drainage [0.6]; Labor [535 h] | 4,800 | 4,800 | MKH2-02-002-PR-2310 | 0.000530307539527147 | 0.0530307539527147 | E2690 | 1 | Long |
| CON-LEG101-PR-2410 |  | Staging Time for Bridge Gully (Scupper) drainage | 20d | 2026-06-21 A | 2026-06-21 A | CON-LEG101-PR-2390 | 100% |  | 2026-08-29 | 2026-09-20 |  |  | Engineer & Technician [64 h] |  |  |  |  |  |  | 1 | Long |
|  | 4 | **New Jersey** |  | 2026-02-01 | 2026-06-21 |  |  |  |  |  |  |  |  |  |  |  |  |  |  |  |  |
| CON-LEG101-PR-2150 |  | PO for New Jersey | 5d | 2026-02-01 A | 2026-02-01 A | CON-LEG101-SB-3770 | 100% |  | 2026-03-07 | 2026-03-11 |  |  | Engineer & Technician [80 h] |  |  | MKH2-02-002-PR-2290 | 0 | 0 | E2450 | 1 | Long |
| CON-LEG101-PR-2160 |  | Material Fabrication for New Jersey | 60d | 2026-03-26 A | 2026-06-18 A | CON-LEG101-PR-2380, CON-LEG101-PR-2150 | 100% |  | 2026-07-30 | 2026-10-10 |  |  | Labor [420 h] |  |  | MKH2-02-002-PR-2300 | 0 | 0 | E2460 | 1 | Long |
| CON-LEG101-PR-2170 |  | Material Delivery for New Jersey | 10d | 2026-06-20 A | 2026-06-20 A | CON-LEG101-PR-2160, CON-LEG101-PR-2390 FF, CON-LEG101-PR-2410 | 100% |  | 2026-09-21 | 2026-10-03 |  |  | "New Jersey [19.2]; Labor [535 h] | 9,600 | 9,600 | MKH2-02-002-PR-2310 | 0.000530307539527147 | 0.0530307539527147 | E2470 | 1 | Long |
| CON-LEG101-PR-2420 |  | Staging Time for New Jersey | 10d | 2026-06-21 A | 2026-06-21 A | CON-LEG101-PR-2170 | 100% |  | 2026-10-04 | 2026-10-14 |  |  | Engineer & Technician [64 h] |  |  |  |  |  |  | 1 | Long |
|  | 7 | **Expansion Joints** |  | 2026-02-11 | 2026-06-21 |  |  |  |  |  |  |  |  |  |  |  |  |  |  |  |  |
| CON-LEG101-PR-2210 |  | PO for Expansion Joints | 5d | 2026-02-11 A | 2026-02-12 A | CON-LEG101-SB-3810 | 100% |  | 2026-02-11 | 2026-02-16 |  |  | Engineer & Technician [80 h] |  |  | MKH2-02-002-PR-2530 | 0 | 0 | E2510 | 1 | Long |
| CON-LEG101-PR-2220 |  | Material Fabrication for Expansion Joints | 60d | 2026-02-12 A | 2026-06-18 A | CON-LEG101-PR-2420, CON-LEG101-PR-2210 | 100% |  | 2026-11-08 | 2027-01-16 |  |  | Labor [420 h] |  |  | MKH2-02-002-PR-2540 | 0 | 0 | E2520 | 1 | Long |
| CON-LEG101-PR-2230 |  | Material Delivery for Expansion Joints | 10d | 2026-06-20 A | 2026-06-20 A | CON-LEG101-PR-2220, CON-LEG101-PR-2420 | 100% |  | 2026-11-05 | 2026-11-16 |  |  | "EXPANSION JOINTS [4.13]; Labor [535 h] | 22,715 | 22,715 | MKH2-02-002-PR-2550 | 0.00908283008018919 | 0.908283008018919 | E2530 | 1 | Long |
| CON-LEG101-PR-2250 |  | Staging Time for Expansion Joints | 10d | 2026-06-21 A | 2026-06-21 A | CON-LEG101-PR-2230 | 100% |  | 2026-11-17 | 2026-11-28 |  |  | Engineer & Technician [64 h] |  |  | MKH2-02-002-PR-4860 | 0 | 0 | E2550 | 1 | Long |
|  | 1 | **Guard Rail** |  | 2026-03-26 | 2027-03-08 |  |  |  |  |  |  |  |  |  |  |  |  |  |  |  |  |
| CON-LEG101-PR-2260 |  | PO for Guard Rail | 5d | 2026-03-26 A | 2026-03-26 A | CON-LEG101-SB-3830 | 100% |  | 2026-04-04 | 2026-04-08 |  |  | Engineer & Technician [80 h] |  |  | MKH2-02-002-PR-2530 | 0 | 0 | E2560 | 1 | Long |
| CON-LEG101-PR-2270 |  | Material Fabrication for Guard Rail | 75d | 2026-03-28 A | 2026-10-15 A | CON-LEG101-PR-2220 SS, CON-LEG101-PR-2260 | 100% |  | 2026-11-02 | 2027-01-28 |  |  | Labor [420 h] |  |  | MKH2-02-002-PR-2540 | 0 | 0 | E2570 | 0.8 | Long |
| CON-LEG101-PR-2280 |  | Material Delivery for Guard Rail | 15d | 2026-10-17 A | 2026-11-08 | CON-LEG101-PR-2270, CON-LEG101-PR-2250 | 75% | 3.75d | 2026-11-08 | 2026-11-24 | 139.75d | 0d | "GUARD RAIL [16]; Labor [535 h] | 28,800 | 21,600 | MKH2-02-002-PR-2550 | 0.00908283008018919 | 0.908283008018919 | E2580 |  | Long |
| CON-LEG101-PR-2290 |  | Staging Time for Guard Rail | 20d | 2027-02-08 | 2027-03-08 | CON-LEG101-PR-2280, CON-LEG101-PR-3100 |  |  |  |  | 61.5d | 0d | Engineer & Technician [64 h] |  |  | MKH2-02-002-PR-4860 | 0 | 0 | E2590 |  | Long |

| ID | WBS | Activity | Duration | Start | Finish | Predecessors | Complete | Remaining | Planned start | Planned finish | Total float | Free float | Expected finish | Resources | Cost | Actual cost | USERTEXT | Weight 1 | Total Weight % | Mapping Sheet Activity ID | % A | JEDDAH 1 - Area Name |
| --- | --- | --- | --- | --- | --- | --- | --- | --- | --- | --- | --- | --- | --- | --- | --- | --- | --- | --- | --- | --- | --- | --- |
|  | 5 | **Logo MODON** |  | 2026-03-26 | 2026-09-30 |  |  |  |  |  |  |  |  |  |  |  |  |  |  |  |  |  |
| CON-LEG101-PR-2340 |  | PO for Logo MODON | 5d | 2026-03-26 A | 2026-03-26 A | CON-LEG101-SB-3870 | 100% |  | 2026-04-04 | 2026-04-08 |  |  |  | Engineer & Technician [80 h] |  |  | MKH2-02-002-PR-2290 | 0 | 0 | E2640 | 1 | Long |
| CON-LEG101-PR-2350 |  | Material Fabrication for Logo MODON | 75d | 2026-03-28 A | 2026-09-24 A | CON-LEG101-PR-2280 SS, CON-LEG101-PR-2340 | 100% |  | 2027-01-28 | 2027-05-02 |  |  |  | Labor [486.4 h] |  |  | MKH2-02-002-PR-2300 | 0 | 0 | E2650 | 0.8 | Long |
| CON-LEG101-PR-2360 |  | Material Delivery for Logo MODON | 19d | 2026-09-26 A | 2026-09-28 A | CON-LEG101-PR-2350, CON-LEG101-PR-2290 | 100% |  | 2027-03-28 | 2027-04-18 |  |  |  | "LOGO MODON [0.4]; Labor [600 h] | 32,000 | 32,000 | MKH2-02-002-PR-2310 | 0.000530307539527147 | 0.0530307539527147 | E2660 |  | Long |
| CON-LEG101-PR-2430 |  | Staging Time for Logo MODON | 10d | 2026-09-30 A | 2026-09-30 A | CON-LEG101-PR-2360 | 100% |  | 2027-04-19 | 2027-04-29 |  |  |  | Engineer & Technician [64 h] |  |  |  |  |  |  |  | Long |
|  | 2 | **GRP Panel** |  | 2026-03-26 | 2027-04-06 |  |  |  |  |  |  |  |  |  |  |  |  |  |  |  |  |  |
| CON-LEG101-PR-2300 |  | PO for GRP Panel | 5d | 2026-03-26 A | 2026-03-26 A | CON-LEG101-SB-3850 | 100% |  | 2026-04-04 | 2026-04-08 |  |  |  | Engineer & Technician [80 h] |  |  | MKH2-02-002-PR-2530 | 0 | 0 | E2600 | 1 | Long |
| CON-LEG101-PR-2310 |  | Material Fabrication for GRP Panel | 60d | 2026-03-28 A | 2026-11-17 | CON-LEG101-PR-2350 SS, CON-LEG101-PR-2300 | 80% | 12d | 2027-01-28 | 2027-04-14 | 151.5d | 0d | 2026-05-07 | Labor [420 h] |  |  | MKH2-02-002-PR-2540 | 0 | 0 | E2610 | 0.6 | Long |
| CON-LEG101-PR-2320 |  | Material Delivery for GRP Panel | 15d | 2027-03-09 | 2027-03-25 | CON-LEG101-PR-2310, CON-LEG101-PR-2290 |  |  |  |  | 61.5d | 0d |  | "GRP PANEL [47]; Labor [535 h] | 75,200 |  | MKH2-02-002-PR-2550 | 0.00908283008018919 | 0.908283008018919 | E2620 |  | Long |
| CON-LEG101-PR-2330 |  | Staging Time for GRP Panel | 10d | 2027-03-27 | 2027-04-06 | CON-LEG101-PR-2320 |  |  |  |  | 61.5d | 104.5d |  | Engineer & Technician [64 h] |  |  | MKH2-02-002-PR-4860 | 0 | 0 | E2630 |  | Long |
|  | 11 | **Irrigation Works** |  | 2026-03-25 | 2026-10-11 |  |  |  |  |  |  |  |  |  |  |  |  |  |  |  |  |  |
|  | 1 | **Flush valve** |  | 2026-03-25 | 2026-10-11 |  |  |  |  |  |  |  |  |  |  |  |  |  |  |  |  |  |
| CON-LEG101-PR-2640 |  | PO for Flush valve | 3d | 2026-03-25 A | 2026-03-25 A | CON-LEG101-SB-3940 | 100% |  | 2026-04-04 | 2026-04-06 |  |  |  | Engineer & Technician [80 h] |  |  | MKH2-02-002-PR-1000 | 0 | 0 | E2940 | 1 | Long |
| CON-LEG101-PR-2680 |  | Material Fabrication for Flush valve | 60d | 2026-04-11 A | 2026-10-05 A | CON-LEG101-PR-2990, CON-LEG101-PR-2640 | 100% |  | 2026-07-30 | 2026-10-10 |  |  |  | Labor [506 h] |  |  | MKH2-02-002-PR-1100 | 0 | 0 | E3020 | 0.6 | Long |
| CON-LEG101-PR-2720 |  | Material Delivery for Flush valve | 20d | 2026-10-06 A | 2026-10-08 A | CON-LEG101-PR-2990, CON-LEG101-PR-2680 | 100% |  | 2026-12-21 | 2027-01-12 |  |  |  | Labor [600 h] |  |  | MKH2-02-002-PR-1200 | 0.00245815908030055 | 0.245815908030055 | E3100 |  | Long |
| CON-LEG101-PR-2760 |  | Staging Time for Flush valve | 10d | 2026-10-10 A | 2026-10-11 A | CON-LEG101-PR-2930, CON-LEG101-PR-2720, CON-LEG101-PR-2070 | 100% |  | 2027-08-14 | 2027-08-25 |  |  |  | Engineer & Technician [64 h] |  |  | MKH2-02-002-PR-4680 | 0 | 0 | E3180 |  | Long |
|  | 4 | **16 mm dia (O.D.) linear low density polyethylene tubing** |  | 2026-03-25 | 2026-04-20 |  |  |  |  |  |  |  |  |  |  |  |  |  |  |  |  |  |
| CON-LEG101-PR-2650 |  | PO for 16 mm dia (O.D.) linear low density polyethylene tubing | 7d | 2026-03-25 A | 2026-03-25 A | CON-LEG101-SB-3950 | 100% |  | 2026-04-04 | 2026-04-11 |  |  |  | Engineer & Technician [80 h] |  |  | MKH2-02-002-PR-1030 | 0 | 0 | E2950 | 1 | Long |
| CON-LEG101-PR-2690 |  | Material Fabrication for 16 mm dia (O.D.) linear low density polyethylene tubing | 70d | 2026-04-11 A | 2026-04-16 A | CON-LEG101-PR-2680 SS, CON-LEG101-PR-2650 | 100% |  | 2026-07-30 | 2026-10-21 |  |  |  | Labor [448 h] |  |  | MKH2-02-002-PR-1130 | 0 | 0 | E3030 | 1 | Long |
| CON-LEG101-PR-2730 |  | Material Delivery for 16 mm dia (O.D.) linear low density polyethylene tubing | 13d | 2026-04-18 A | 2026-04-19 A | CON-LEG101-PR-2690 | 100% |  | 2026-09-15 | 2026-10-01 |  |  |  | Supply and installation of 16 mm dia (O.D.) linear low density polyethylene tubing including in line P.C. emitters, accessories, stakes, takeoff /risers connections from laterals, and all requirements needed to finish work as per drawings (In line dripper [5469]; Labor [600 h] | 218,760 | 218,760 | MKH2-02-002-PR-1230 | 0.00245815908030055 | 0.245815908030055 | E3110 | 1 | Long |
| CON-LEG101-PR-2770 |  | Staging Time for 16 mm dia (O.D.) linear low density polyethylene tubing | 10d | 2026-04-20 A | 2026-04-20 A | CON-LEG101-PR-2680 SS, CON-LEG101-PR-2730 | 100% |  | 2026-10-01 | 2026-10-13 |  |  |  | Engineer & Technician [64 h] |  |  | MKH2-02-002-PR-4710 | 0 | 0 | E3190 | 1 | Long |
|  | 5 | **Irrigation Controller** |  | 2026-03-25 | 2026-04-20 |  |  |  |  |  |  |  |  |  |  |  |  |  |  |  |  |  |
| CON-LEG101-PR-2660 |  | PO for Irrigation Controller | 5d | 2026-03-25 A | 2026-03-25 A | CON-LEG101-SB-3970 | 100% |  | 2026-04-04 | 2026-04-08 |  |  |  | Engineer & Technician [80 h] |  |  | MKH2-02-002-PR-1040 | 0 | 0 | E2960 | 1 | Long |
| CON-LEG101-PR-2700 |  | Material Fabrication for Irrigation Controller | 75d | 2026-04-11 A | 2026-04-16 A | CON-LEG101-PR-2690 SS+7d, CON-LEG101-PR-2660 | 100% |  | 2026-08-08 | 2026-11-04 |  |  |  | Labor [524.8 h] |  |  | MKH2-02-002-PR-1140 | 0 | 0 | E3040 | 1 | Long |
| CON-LEG101-PR-2740 |  | Material Delivery for Irrigation Controller | 20d | 2026-04-18 A | 2026-04-19 A | CON-LEG101-PR-2700, CON-LEG101-PR-2770 | 100% |  | 2026-10-13 | 2026-11-05 |  |  |  | Labor [907 h] |  |  | MKH2-02-002-PR-1240 | 0.00245815908030055 | 0.245815908030055 | E3120 | 1 | Long |
| CON-LEG101-PR-2780 |  | Staging Time for Irrigation Controller | 10d | 2026-04-20 A | 2026-04-20 A | CON-LEG101-PR-2740, CON-LEG101-PR-1530 | 100% |  | 2027-06-12 | 2027-06-23 |  |  |  | Engineer & Technician [64 h] |  |  | MKH2-02-002-PR-4720 | 0 | 0 | E3200 | 1 | Long |

| ID | WBS | Activity | Duration | Start | Finish | Predecessors | Complete | Planned start | Planned finish | Resources | Cost | Actual cost | USERTEXT | Weight 1 | Total Weight % | Mapping Sheet Activity ID | % A | JEDDAH 1 - Area Name |
| --- | --- | --- | --- | --- | --- | --- | --- | --- | --- | --- | --- | --- | --- | --- | --- | --- | --- | --- |
|  | 2 | **Single station decoder** |  | 2026-03-25 | 2026-04-20 |  |  |  |  |  |  |  |  |  |  |  |  |  |
| CON-LEG101-PR-2800 |  | PO for Single station decoder | 4d | 2026-03-25 A | 2026-03-25 A | CON-LEG101-SB-3990 | 100% | 2026-04-04 | 2026-04-07 | Engineer & Technician [80 h] |  |  | MKH2-02-002-PR-1040 | 0 | 0 | E3260 | 1 | Long |
| CON-LEG101-PR-2810 |  | Material Fabrication for Single station decoder | 75d | 2026-04-11 A | 2026-04-16 A | CON-LEG101-PR-2700 SS+6d, CON-LEG101-PR-2800 | 100% | 2026-08-15 | 2026-11-11 | Labor [524.8 h] |  |  | MKH2-02-002-PR-1140 | 0 | 0 | E3270 | 1 | Long |
| CON-LEG101-PR-2820 |  | Material Delivery for Single station decoder | 20d | 2026-04-18 A | 2026-04-19 A | CON-LEG101-PR-2810 | 100% | 2026-09-20 | 2026-10-14 | Labor [800 h] |  |  | MKH2-02-002-PR-1240 | 0.00245815908030055 | 0.245815908030055 | E3280 | 1 | Long |
| CON-LEG101-PR-2830 |  | Staging Time for Single station decoder | 10d | 2026-04-20 A | 2026-04-20 A | CON-LEG101-PR-2820 | 100% | 2026-10-14 | 2026-10-26 | Engineer & Technician [64 h] |  |  | MKH2-02-002-PR-4720 | 0 | 0 | E3290 | 1 | Long |
|  | 6 | **Decoder cables 12 AWG** |  | 2026-03-25 | 2026-04-20 |  |  |  |  |  |  |  |  |  |  |  |  |  |
| CON-LEG101-PR-2670 |  | PO for Decoder cables 12 AWG | 3d | 2026-03-25 A | 2026-03-25 A | CON-LEG101-SB-4010 | 100% | 2026-04-04 | 2026-04-06 | Engineer & Technician |  |  | MKH2-02-002-PR-1050 | 0 | 0 | E2970 | 1 | Long |
| CON-LEG101-PR-2710 |  | Material Fabrication for Decoder cables 12 AWG | 75d | 2026-04-11 A | 2026-04-16 A | CON-LEG101-PR-2810 SS+7d, CON-LEG101-PR-2670 | 100% | 2026-08-23 | 2026-11-19 | Labor [524.8 h] |  |  | MKH2-02-002-PR-1150 | 0 | 0 | E3050 | 1 | Long |
| CON-LEG101-PR-2750 |  | Material Delivery for Decoder cables 12 AWG | 20d | 2026-04-18 A | 2026-04-19 A | CON-LEG101-PR-2710 | 100% | 2026-10-06 | 2026-10-29 | Labor [1020 h] |  |  | MKH2-02-002-PR-1250 | 0.00245815908030055 | 0.245815908030055 | E3130 | 1 | Long |
| CON-LEG101-PR-2790 |  | Staging Time for Decoder cables 12 AWG | 15d | 2026-04-20 A | 2026-04-20 A | CON-LEG101-PR-2750 | 100% | 2026-10-29 | 2026-11-16 | Engineer & Technician [64 h] |  |  | MKH2-02-002-PR-4730 | 0 | 0 | E3210 | 1 | Long |
|  | 1 | **Construction** |  | 2025-11-20 | 2028-05-02 |  |  |  |  |  |  |  |  |  |  |  |  |  |
|  | 9 | **Site Demolition** |  | 2025-11-20 | 2026-02-02 |  |  |  |  |  |  |  |  |  |  |  |  |  |
| CON-LEG101-SD-1000 |  | Removal of chain link fence [Demolition Works ] | 21d | 2025-11-20 A | 2025-11-30 A | CON-LEG101-MS-1070, CON-LEG101-MB-1340, CON-LEG101-MB-1270, CON-LEG101-MB-1260, CON-LEG101-MB-1250, CON-LEG101-MB-1160, CON-LEG101-MB-1150, CON-LEG101-MB-1130, CON-LEG101-MB-1120, CON-LEG101-MB-1110, CON-LEG101-MB-1020, CON-LEG101-MB-1000, CON-LEG101-TP-1330, CON-LEG101-PA-1000, CON-LEG101-PA-1010, CON-LEG101-PA-1020, CON-LEG101-PA-1030, CON-LEG101-PA-1040, CON-LEG101-PS-1100, CON-LEG101-PS-1110, CON-LEG101-PS-1120, CON-LEG101-PS-1130, CON-LEG101-PS-1140, CON-LEG101-PS-1150, CON-LEG101-PS-1160, CON-LEG101-PS-1170, CON-LEG101-PS-1090 | 100% | 2025-12-20 | 2026-01-12 | Excavator [480 h]; Loader [288 h]; Bulldozer [192 h]; Truck [480 h]; Labor [300 h]; Driver [250 h]; Eq. Operator [500 h]; Removal of chain link fence [1443.85] | 50,534.75 | 50,534.75 |  |  |  | A1000 | 1 | Demolit |
| CON-LEG101-SD-1030 |  | Demolition of existing structures [Demolition Works ] | 21d | 2025-11-20 A | 2025-12-04 A | CON-LEG101-SD-1000, CON-LEG101-MS-1070, CON-LEG101-MB-1340, CON-LEG101-MB-1270, CON-LEG101-MB-1260, CON-LEG101-MB-1250, CON-LEG101-MB-1160, CON-LEG101-MB-1150, CON-LEG101-MB-1130, CON-LEG101-MB-1120, CON-LEG101-MB-1110, CON-LEG101-MB-1020, CON-LEG101-MB-1000, CON-LEG101-TP-1330, CON-LEG101-PA-1000, CON-LEG101-PA-1010, CON-LEG101-PA-1020, CON-LEG101-PA-1030, CON-LEG101-PA-1040, CON-LEG101-PS-1100, CON-LEG101-PS-1110, CON-LEG101-PS-1120, CON-LEG101-PS-1130, CON-LEG101-PS-1140, CON-LEG101-PS-1150, CON-LEG101-PS-1160, CON-LEG101-PS-1170, CON-LEG101-PS-1090 | 100% | 2026-01-13 | 2026-02-05 | Demolition of existing structures [1675]; Excavator [240 h]; Loader [144 h]; Bulldozer [96 h]; Truck [240 h]; Labor [300 h]; Driver [250 h]; Eq. Operator [500 h] | 117,250 | 117,250 |  |  |  | A1060 | 1 | Demolit |
| CON-LEG101-SD-1010 |  | Removal of concrete fence [Demolition Works ] | 21d | 2025-11-24 A | 2025-12-03 A | CON-LEG101-SD-1000, CON-LEG101-MS-1070, CON-LEG101-MB-1340, CON-LEG101-MB-1270, CON-LEG101-MB-1260, CON-LEG101-MB-1250, CON-LEG101-MB-1160, CON-LEG101-MB-1150, CON-LEG101-MB-1130, CON-LEG101-MB-1120, CON-LEG101-MB-1110, CON-LEG101-MB-1020, CON-LEG101-MB-1000, CON-LEG101-TP-1330, CON-LEG101-PA-1000, CON-LEG101-PA-1010, CON-LEG101-PA-1020, CON-LEG101-PA-1030, CON-LEG101-PA-1040, CON-LEG101-PS-1100, CON-LEG101-PS-1110, CON-LEG101-PS-1120, CON-LEG101-PS-1130, CON-LEG101-PS-1140, CON-LEG101-PS-1150, CON-LEG101-PS-1160, CON-LEG101-PS-1170, CON-LEG101-PS-1090 | 100% | 2026-01-13 | 2026-02-05 | Removal of concrete fence [1360.1]; Excavator [240 h]; Loader [144 h]; Bulldozer [96 h]; Truck [240 h]; Labor [300 h]; Driver [250 h]; Eq. Operator [500 h] | 108,808 | 108,808 |  |  |  | A1020 | 1 | Demolit |
| CON-LEG101-SD-1020 |  | Removal of Electricity distribution panel [Demolition Works ] | 21d | 2026-02-01 A | 2026-02-02 A | CON-LEG101-SD-1010, CON-LEG101-MS-1070, CON-LEG101-MB-1340, CON-LEG101-MB-1270, CON-LEG101-MB-1260, CON-LEG101-MB-1250, CON-LEG101-MB-1160, CON-LEG101-MB-1150, CON-LEG101-MB-1130, CON-LEG101-MB-1120, CON-LEG101-MB-1110, CON-LEG101-MB-1020, CON-LEG101-MB-1000, CON-LEG101-TP-1330, CON-LEG101-PA-1000, CON-LEG101-PA-1010, CON-LEG101-PA-1020, CON-LEG101-PA-1030, CON-LEG101-PA-1040, CON-LEG101-PS-1100, CON-LEG101-PS-1110, CON-LEG101-PS-1120, CON-LEG101-PS-1130, CON-LEG101-PS-1140, CON-LEG101-PS-1150, CON-LEG101-PS-1160, CON-LEG101-PS-1170, CON-LEG101-PS-1090 | 100% | 2026-03-15 | 2026-04-12 | Removal of Electricity distribution panel [0.67]; Excavator [240 h]; Loader [144 h]; Bulldozer [96 h]; Truck [240 h]; Labor [1200 h]; Driver [1000 h]; Eq. Operator [2000 h] | 3,350 | 3,350 |  |  |  | A1040 | 1 | Demolit |
|  | 1 | **Roads & Meduim Voltage** |  | 2025-12-01 | 2027-07-03 |  |  |  |  |  |  |  |  |  |  |  |  |  |
|  | 1 | **Local – 01** |  | 2025-12-01 | 2027-06-16 |  |  |  |  |  |  |  |  |  |  |  |  |  |
|  | 1 | **LOCAL - 01 Segment-01 (From 0+000 to 1+066)** |  | 2025-12-01 | 2027-04-28 |  |  |  |  |  |  |  |  |  |  |  |  |  |
|  | 7 | **Road Works** |  | 2025-12-01 | 2026-07-16 |  |  |  |  |  |  |  |  |  |  |  |  |  |
|  | 1 | **Earthworks and Site Grading** |  | 2025-12-01 | 2026-04-20 |  |  |  |  |  |  |  |  |  |  |  |  |  |
| CON-LEG101-LR-2760 |  | Parcrels Excavation for Roadway [Local – 01 Segment-01] | 20d | 2025-12-01 A | 2026-04-19 A | CON-LEG101-LR-1360, CON-LEG101-EN-1570, CON-LEG101-EN-1580, CON-LEG101-EN-1590, CON-LEG101-EN-1600, CON-LEG101-EN-1610, CON-LEG101-EN-3440 | 100% | 2026-02-14 | 2026-03-09 | Parcrels Excavation for cuttings (all types of soil) [8278.19]; Loader [144 h]; Water Tanker [144 h]; Grader [144 h]; Truck [144 h]; Road Roller [144 h]; Labor [600 h]; Driver [1200 h]; Eq. Operator [1800 h] | 16,556.38 | 16,556.38 |  |  |  | A1310 | 1 | L01 -01 |
| CON-LEG101-LR-4570 |  | Embankments to the parcels for roads [Local – 01 Segment-01] | 21d | 2025-12-06 A | 2025-12-29 A | CON-LEG101-PR-4000, CON-LEG101-LR-4070, CON-LEG101-EN-1570, CON-LEG101-EN-1580, CON-LEG101-EN-1590, CON-LEG101-EN-1600, CON-LEG101-EN-1610, CON-LEG101-EN-3440, CON-LEG101-PR-1080 | 100% | 2026-04-18 | 2026-05-11 | Embankments to the parcels [6341.22]; Excavator [96 h]; Bulldozer [96 h]; Water Tanker [96 h]; Grader [96 h]; Truck [96 h]; Bucket [96 h]; Compactor [96 h]; Labor [400 h]; Driver [400 h]; Eq. Operator [1000 h] | 190,236.6 | 190,236.6 |  |  |  | A1730 | 1 | L01 -01 |
| CON-LEG101-LR-1360 |  | Excavation for Roadway [Local – 01 Segment-01] | 21d | 2025-12-15 A | 2026-04-19 A | CON-LEG101-SD-1000, CON-LEG101-EN-1570, CON-LEG101-EN-1580, CON-LEG101-EN-1590, CON-LEG101-EN-1600, CON-LEG101-EN-1610, CON-LEG101-EN-3440, CON-LEG101-MS-1060 | 100% | 2026-01-20 | 2026-02-12 | Excavation for Roadway, fences and bridge, cuttings including dump locations (all types of soil) [12808.9]; Loader [144 h]; Water Tanker [144 h]; Grader [144 h]; Truck [144 h]; Road Roller [144 h]; Labor [150 h]; Driver [300 h]; Eq. Operator [450 h] | 25,617.86 | 25,617.86 |  |  |  | A1100 | 1 | L01 -01 |
| CON-LEG101-LR-4070 |  | Embankments to the roads [Local – 01 Segment-01] | 15d | 2025-12-17 A | 2026-04-20 A | CON-LEG101-PR-4000, CON-LEG101-LR-2760, CON-LEG101-EN-1570, CON-LEG101-EN-1580, CON-LEG101-EN-1590, CON-LEG101-EN-1600, CON-LEG101-EN-1610, CON-LEG101-EN-3440, CON-LEG101-SD-1020 | 100% | 2026-03-02 | 2026-03-19 | Embankments to the roads , fences and bridge. [8921.65]; Excavator [96 h]; Bulldozer [96 h]; Water Tanker [96 h]; Grader [96 h]; Truck [96 h]; Bucket [96 h]; Compactor [96 h]; Labor [800 h]; Driver [800 h]; Eq. Operator [2000 h] | 267,649.5 | 267,649.5 |  |  |  | A1520 | 1 | L01 -01 |

| ID | WBS | Activity | Duration | Start | Finish | Predecessors | Complete | Planned start | Planned finish | Total float | Free float | Resources | Cost | Actual cost | Mapping Sheet Activity ID | % A | JEDDAH 1 - Area Name |
| --- | --- | --- | --- | --- | --- | --- | --- | --- | --- | --- | --- | --- | --- | --- | --- | --- | --- |
|  | 2 | **Asphalt Work** |  | 2025-12-25 | 2026-07-16 |  |  |  |  |  |  |  |  |  |  |  |  |
| CON-LEG101-LR-5580 |  | Subgrade [Local – 01 Segment-01] | 14d | 2025-12-25 A | 2026-04-27 A | CON-LEG101-LR-3500, CON-LEG101-LR-10910, CON-LEG101-PR-4000, CON-LEG101-LR-4570, CON-LEG101-LR-4200, CON-LEG101-LR-3410, CON-LEG101-EN-3440 | 100% | 2026-06-28 | 2026-07-14 |  |  | Subgrade [3749.15]; Loader [48 h]; Water Tanker [48 h]; Grader [48 h]; Truck [48 h]; Road Roller [48 h]; Labor [75 h]; Driver [150 h]; Eq. Operator [225 h] | 119,972.8 | 119,972.8 | A1930 | 1 | L01 -01 |
| CON-LEG101-LR-5680 |  | Aggregate base course [Local – 01 Segment-01] | 10d | 2026-04-28 A | 2026-07-14 A | CON-LEG101-LR-10860, CON-LEG101-LR-5580, CON-LEG101-PR-1490, CON-LEG101-EN-3470 | 100% | 2026-08-10 | 2026-08-22 |  |  | Excavator [48 h]; Water Tanker [48 h]; Truck [96 h]; Road Roller [48 h]; Asphalt Paver [48 h]; Driver [150 h]; Eq. Operator [150 h]; Aggregate base course [2499.44 M3] | 149,966.4 | 149,966.4 | A2060 | 1 | L01 -01 |
| CON-LEG101-LR-5780 |  | Prime Coat (MC1) [Local – 01 Segment-01] | 6d | 2026-05-14 A | 2026-07-15 A | CON-LEG101-LR-5680 | 100% | 2026-08-29 | 2026-09-03 |  |  | Bituminous base course (Grading I - Class A), including Prime Coat (MC1) according to drawings [249.94]; Water Tanker [48 h]; Grader [48 h]; Truck [48 h]; Road Roller [48 h]; Asphalt Paver [48 h]; Labor [50 h]; Driver [100 h]; Eq. Operator [150 h] | 144,965.2 | 144,965.2 | A2200 | 1 | L01 -01 |
| CON-LEG101-LR-5880 |  | Bituminous Base Course [Local – 01 Segment-01] | 6d | 2026-05-19 A | 2026-07-16 A | CON-LEG101-LR-5780, CON-LEG101-PR-1510 | 100% | 2026-09-07 | 2026-09-13 |  |  | Bituminous base course (Grading I - Class A), including Prime Coat (MC1) according to drawings [583.2]; Water Tanker [32 h]; Truck [240 h]; Road Roller [240 h]; Asphalt Paver [48 h]; Labor [450 h]; Driver [300 h]; Eq. Operator [300 h] | 338,256 | 338,256 | A2310 | 1 | L01 -01 |
|  | 8 | **Electrical Works** |  | 2026-04-11 | 2027-04-28 |  |  |  |  |  |  |  |  |  |  |  |  |
| CON-LEG101-LR-15000 |  | Approval of Subcontractor / Supplier / Consultant for Medium Voltage from SEC | 10d | 2026-11-04 | 2026-11-15 | CON-LEG101-SB-1670 SS |  |  |  | -169d | 0d |  |  |  |  |  | L01 -01 |
| CON-LEG101-LR-15010 |  | Approval Materials of Medium Voltage from SEC | 10d | 2026-11-16 | 2026-11-26 | CON-LEG101-LR-15000 |  |  |  | -169d | 0d |  |  |  |  |  | L01 -01 |
| CON-LEG101-LR-15030 |  | PO for Medium Voltage | 2d | 2026-11-28 | 2026-11-29 | CON-LEG101-LR-15010 |  |  |  | -169d | 0d |  |  |  |  |  | L01 -01 |
| CON-LEG101-LR-15020 |  | Testing Materials of Medium Voltage from SEC | 5d | 2027-02-08 | 2027-02-17 | CON-LEG101-LR-15010, CON-LEG101-PR-1080 |  |  |  | -169d | 0d |  |  |  |  |  | L01 -01 |
|  | 2 | **Medium Voltage** |  | 2026-04-11 | 2027-04-28 |  |  |  |  |  |  |  |  |  |  |  |  |
| CON-LEG101-LR-6970 |  | Installation of Medium Voltage Cables Duct Banks [Local – 01 Segment-01] | 10d | 2026-04-11 A | 2026-04-30 A | CON-LEG101-PR-1400, CON-LEG101-LR-6880, CON-LEG101-PR-1320 | 100% | 2026-09-12 | 2026-09-22 |  |  | Truck [48 h]; Bucket [48 h]; Compactor [48 h]; Labor [75 h]; Driver [75 h]; Eq. Operator [150 h]; Carpenter [75 h]; Steel Fixer [75 h]; Mason [75 h]; Electrician [75 h]; Duct bank for (1) cables [52.76]; Duct bank for (2) cables [10.05]; Duct bank for (4) cables [7.54] | 20,528.2 | 20,528.2 | A3910 | 1 | L01 -01 |
| CON-LEG101-LR-6880 |  | Excavation for Medium Voltage trench [Local – 01 Segment-01] | 7d | 2027-03-27 | 2027-04-03 | CON-LEG101-PR-1880, CON-LEG101-EN-1660, CON-LEG101-EN-3440, CON-LEG101-LR-4570 |  |  |  | -169d | 0d | "Excavation for Trench size 90cm wide and 80cm deep [407.43]; Excavator [144 h]; Truck [144 h]; Labor [600 h]; Driver [150 h]; Eq. Operator [150 h] | 16,297.2 |  | A3760 |  | L01 -01 |
| CON-LEG101-LR-7060 |  | Installation of Medium Voltage Cables [Local – 01 Segment-01] | 7d | 2027-04-04 | 2027-04-11 | CON-LEG101-LR-6970 |  |  |  | -90d | 0d | Cable 13.8 kV (3-C)x 50 mm² CU /XLPE/PVC, Unarmored; Excavator [48 h]; Truck [48 h]; Bucket [48 h]; Compactor [48 h]; Labor [150 h]; Skilled Labor [75 h]; Driver [75 h]; Eq. Operator [225 h]; Electrician [150 h]; Cable 13.8 kV 3Cx 500 mm² Al XLPE,/LLDPE / Unarmored [1457.25] | 320,595 |  | A4040 |  | L01 -01 |
| CON-LEG101-LR-7150 |  | Installation of Straight joints cables [Local – 01 Segment-01] | 2d | 2027-04-12 | 2027-04-13 | CON-LEG101-PR-1450, CON-LEG101-LR-7060, CON-LEG101-PR-1300 |  |  |  | -90d | 0d | Excavator [48 h]; Truck [48 h]; Bucket [48 h]; Compactor [48 h]; Labor [150 h]; Skilled Labor [75 h]; Driver [75 h]; Eq. Operator [225 h]; Electrician [150 h]; Straight joints cables for 13.8 kv 3Cx 500 mm², Al /XLPE/LLDPE [3.62] | 10,136 |  | A4160 |  | L01 -01 |
| CON-LEG101-LR-7240 |  | Installation of Cable Termination for 13.8 kv 3Cx 500 mm², Al /XLPE/LLDPE [Local – 01 Segment-01] | 3d | 2027-04-14 | 2027-04-17 | CON-LEG101-PR-1450, CON-LEG101-LR-7150, CON-LEG101-PR-1300, CON-LEG101-LR-5580 |  |  |  | -90d | 0d | Labor [75 h]; Skilled Labor [75 h]; Electrician [75 h]; Cable Termination for 13.8 kv 3Cx 500 mm², Al /XLPE/LLDPE [2.81] | 7,868 |  | A4280 |  | L01 -01 |
| CON-LEG101-LR-7330 |  | Installation of Medium Voltage Switchgears [Local – 01 Segment-01] | 7d | 2027-04-18 | 2027-04-25 | CON-LEG101-PR-1450, CON-LEG101-LR-7240, CON-LEG101-PR-1300 |  |  |  | -90d | 0d | Normally Open Point (R M U) 13.8 kv for Outdoor type according to the Saudi Electric Company specifications and requirements. [0.67]; Excavator [48 h]; Truck [48 h]; Bucket [48 h]; Compactor [48 h]; Labor [100 h]; Skilled Labor [50 h]; Driver [50 h]; Eq. Operator [150 h]; Electrician [100 h] | 40,200 |  | A4420 |  | L01 -01 |
| CON-LEG101-LR-7680 |  | Installation of Cable Termination [Local – 01 Segment-01] | 3d | 2027-04-26 | 2027-04-28 | CON-LEG101-LR-7330, CON-LEG101-PR-1450, CON-LEG101-PR-1300 |  |  |  | -90d | 0d | Cable Termination for 13.8 kv (3-C)x 50 mm² CU /XLPE/PVC, Unarmored.; Labor [50 h]; Skilled Labor [50 h]; Electrician [50 h] |  |  | A4920 |  | L01 -01 |
|  | 2 | **LOCAL - 01 Segment-02 (From 1+066 to 2+133)** |  | 2025-12-06 | 2027-05-20 |  |  |  |  |  |  |  |  |  |  |  |  |
|  | 7 | **Road Works** |  | 2025-12-06 | 2026-06-14 |  |  |  |  |  |  |  |  |  |  |  |  |
|  | 1 | **Earthworks and Site Grading** |  | 2025-12-06 | 2026-04-15 |  |  |  |  |  |  |  |  |  |  |  |  |
| CON-LEG101-LR-2770 |  | Parcrels Excavation for Roadway [Local – 01 Segment-02] | 18d | 2025-12-06 A | 2025-12-11 A | CON-LEG101-LR-1450, CON-LEG101-EN-1570, CON-LEG101-EN-1580, CON-LEG101-EN-1590, CON-LEG101-EN-1600, CON-LEG101-EN-1610, CON-LEG101-EN-3440 | 100% | 2026-02-14 | 2026-03-07 |  |  | Parcrels Excavation for cuttings (all types of soil) [8278.19]; Loader [144 h]; Water Tanker [144 h]; Grader [144 h]; Truck [144 h]; Road Roller [144 h]; Labor [600 h]; Driver [1200 h]; Eq. Operator [1800 h] | 16,556.38 | 16,556.38 | A1320 | 1 | L01 -02 |
| CON-LEG101-LR-4640 |  | Embankments to the parcels for roads [Local – 01 Segment-02] | 20d | 2025-12-13 A | 2026-04-15 A | CON-LEG101-PR-4000, CON-LEG101-LR-4170, CON-LEG101-EN-1570, CON-LEG101-EN-1580, CON-LEG101-EN-1590, CON-LEG101-EN-1600, CON-LEG101-EN-1610, CON-LEG101-EN-3440 | 100% | 2026-04-04 | 2026-04-26 |  |  | Embankments to the parcels [6341.17]; Excavator [96 h]; Bulldozer [96 h]; Water Tanker [96 h]; Grader [96 h]; Truck [96 h]; Bucket [96 h]; Compactor [96 h]; Labor [400 h]; Driver [400 h]; Eq. Operator [1000 h] | 190,235.1 | 190,235.1 | A1740 | 1 | L01 -02 |
| CON-LEG101-LR-1450 |  | Excavation for Roadway [Local – 01 Segment-02] | 21d | 2025-12-16 A | 2026-01-19 A | CON-LEG101-SD-1000, CON-LEG101-LR-1360 SS, CON-LEG101-EN-1570, CON-LEG101-EN-1580, CON-LEG101-EN-1590, CON-LEG101-EN-1600, CON-LEG101-EN-1610, CON-LEG101-EN-3440 | 100% | 2026-02-07 | 2026-03-03 |  |  | Excavation for Roadway, fences and bridge, cuttings including dump locations (all types of soil) [12808.9]; Loader [144 h]; Water Tanker [144 h]; Grader [144 h]; Truck [144 h]; Road Roller [144 h]; Labor [150 h]; Driver [300 h]; Eq. Operator [450 h] | 25,617.86 | 25,617.86 | A1110 | 1 | L01 -02 |
| CON-LEG101-LR-4170 |  | Embankments to the roads [Local – 01 Segment-02] | 19d | 2025-12-17 A | 2026-01-20 A | CON-LEG101-PR-4000, CON-LEG101-LR-2770, CON-LEG101-EN-1570, CON-LEG101-EN-1580, CON-LEG101-EN-1590, CON-LEG101-EN-1600, CON-LEG101-EN-1610, CON-LEG101-EN-3440 | 100% | 2026-03-04 | 2026-03-30 |  |  | Embankments to the roads , fences and bridge. [8921.65]; Excavator [96 h]; Bulldozer [96 h]; Water Tanker [96 h]; Grader [96 h]; Truck [96 h]; Bucket [96 h]; Compactor [96 h]; Labor [800 h]; Driver [800 h]; Eq. Operator [2000 h] | 267,649.5 | 267,649.5 | A1530 | 1 | L01 -02 |

| ID | WBS | Activity | Duration | Start | Finish | Predecessors | Complete | Planned start | Planned finish | Total float | Free float | Resources | Cost | Actual cost | Mapping Sheet Activity ID | % A | JEDDAH 1 - Area Name |
| --- | --- | --- | --- | --- | --- | --- | --- | --- | --- | --- | --- | --- | --- | --- | --- | --- | --- |
|  | 2 | **Asphalt Work** |  | 2025-12-29 | 2026-06-14 |  |  |  |  |  |  |  |  |  |  |  |  |
| CON-LEG101-LR-5590 |  | Subgrade [Local – 01 Segment-02] | 14d | 2025-12-29 A | 2026-05-02 A | CON-LEG101-LR-3510, CON-LEG101-LR-10960, CON-LEG101-PR-4000, CON-LEG101-LR-1450, CON-LEG101-LR-2770, CON-LEG101-LR-4170, CON-LEG101-LR-4640, CON-LEG101-LR-4210, CON-LEG101-LR-3420, CON-LEG101-EN-3440 | 100% | 2026-06-21 | 2026-07-07 |  |  | Subgrade [3749.15]; Loader [48 h]; Water Tanker [48 h]; Grader [48 h]; Truck [48 h]; Road Roller [48 h]; Labor [50 h]; Driver [100 h]; Eq. Operator [150 h] | 119,972.8 | 119,972.8 | A1940 | 1 | L01 -02 |
| CON-LEG101-LR-5690 |  | Aggregate base course [Local – 01 Segment-02] | 14d | 2026-05-03 A | 2026-05-21 A | CON-LEG101-LR-11020, CON-LEG101-LR-5590, CON-LEG101-PR-1490, CON-LEG101-EN-3470 | 100% | 2026-06-15 | 2026-07-01 |  |  | Excavator [31.67 h]; Water Tanker [34 h]; Truck [96 h]; Road Roller [48 h]; Asphalt Paver [48 h]; Driver [150 h]; Eq. Operator [150 h]; Aggregate base course [2499.44 M3] | 149,966.4 | 149,966.4 | A2070 | 1 | L01 -02 |
| CON-LEG101-LR-5790 |  | Prime Coat (MC1) [Local – 01 Segment-02] | 6d | 2026-05-18 A | 2026-06-06 A | CON-LEG101-LR-5690, CON-LEG101-LR-7680, CON-LEG101-LR-5880 | 100% | 2026-11-09 | 2026-11-15 |  |  | Bituminous base course (Grading I - Class A), including Prime Coat (MC1) according to drawings [249.94]; Water Tanker [24 h]; Grader [48 h]; Truck [48 h]; Road Roller [48 h]; Asphalt Paver [48 h]; Labor [50 h]; Driver [100 h]; Eq. Operator [150 h] | 144,965.2 | 144,965.2 | A2210 | 1 | L01 -02 |
| CON-LEG101-LR-5890 |  | Bituminous Base Course [Local – 01 Segment-02] | 6d | 2026-05-20 A | 2026-06-14 A | CON-LEG101-LR-5790, CON-LEG101-PR-1510 | 100% | 2026-11-17 | 2026-11-24 |  |  | Bituminous base course (Grading I - Class A), including Prime Coat (MC1) according to drawings [583.2]; Water Tanker [32 h]; Truck [240 h]; Road Roller [240 h]; Asphalt Paver [48 h]; Labor [450 h]; Driver [300 h]; Eq. Operator [300 h] | 338,256 | 338,256 | A2320 | 1 | L01 -02 |
|  | 8 | **Electrical Works** |  | 2026-04-14 | 2027-05-20 |  |  |  |  |  |  |  |  |  |  |  |  |
|  | 2 | **Medium Voltage** |  | 2026-04-14 | 2027-05-20 |  |  |  |  |  |  |  |  |  |  |  |  |
| CON-LEG101-LR-6980 |  | Installation of Medium Voltage Cables Duct Banks [Local – 01 Segment-02] | 10d | 2026-04-14 A | 2026-04-30 A | CON-LEG101-PR-1400, CON-LEG101-LR-6890, CON-LEG101-PR-1320 | 100% | 2026-09-20 | 2026-10-01 |  |  | Truck [48 h]; Bucket [48 h]; Compactor [48 h]; Labor [50 h]; Driver [50 h]; Eq. Operator [100 h]; Carpenter [50 h]; Steel Fixer [50 h]; Mason [50 h]; Electrician [50 h]; Duct bank for (1) cables [52.76]; Duct bank for (2) cables [10.05]; Duct bank for (4) cables [7.54] | 20,528.2 | 20,528.2 | A3920 | 1 | L01 -02 |
| CON-LEG101-LR-6890 |  | Excavation for Medium Voltage trench [Local – 01 Segment-02] | 7d | 2027-04-04 | 2027-04-11 | CON-LEG101-LR-3420, CON-LEG101-LR-4210, CON-LEG101-PR-1880, CON-LEG101-LR-6880, CON-LEG101-EN-1660, CON-LEG101-EN-3440 |  |  |  | -169d | 0d | "Excavation for Trench size 90cm wide and 80cm deep [407.43]; Excavator [144 h]; Truck [144 h]; Labor [900 h]; Driver [225 h]; Eq. Operator [225 h] | 16,297.2 |  | A3770 |  | L01 -02 |
| CON-LEG101-LR-7070 |  | Installation of Medium Voltage Cables [Local – 01 Segment-02] | 7d | 2027-04-12 | 2027-04-19 | CON-LEG101-LR-6980, CON-LEG101-LR-5590 |  |  |  | -87d | 0d | Cable 13.8 kV (3-C)x 50 mm² CU /XLPE/PVC, Unarmored; Excavator [48 h]; Truck [48 h]; Bucket [48 h]; Compactor [48 h]; Labor [100 h]; Skilled Labor [50 h]; Driver [50 h]; Eq. Operator [150 h]; Electrician [100 h]; Cable 13.8 kV 3Cx 500 mm² Al XLPE,/LLDPE / Unarmored [1457.25] | 320,595 |  | A4050 |  | L01 -02 |
| CON-LEG101-LR-7160 |  | Installation of Straight joints cables [Local – 01 Segment-02] | 5d | 2027-04-20 | 2027-04-25 | CON-LEG101-PR-1450, CON-LEG101-LR-7070, CON-LEG101-PR-1300 |  |  |  | -87d | 3d | Excavator [48 h]; Truck [48 h]; Bucket [48 h]; Compactor [48 h]; Labor [100 h]; Skilled Labor [50 h]; Driver [50 h]; Eq. Operator [150 h]; Electrician [100 h]; Straight joints cables for 13.8 kv 3Cx 500 mm², Al /XLPE/LLDPE [3.62] | 10,136 |  | A4170 |  | L01 -02 |
| CON-LEG101-LR-7250 |  | Installation of Cable Termination for 13.8 kv 3Cx 500 mm², Al /XLPE/LLDPE [Local – 01 Segment-02] | 3d | 2027-04-29 | 2027-05-02 | CON-LEG101-PR-1450, CON-LEG101-LR-7160, CON-LEG101-PR-1300, CON-LEG101-LR-7680 |  |  |  | -90d | 0d | Labor [50 h]; Skilled Labor [50 h]; Electrician [50 h]; Cable Termination for 13.8 kv 3Cx 500 mm², Al /XLPE/LLDPE [2.81] | 7,868 |  | A4290 |  | L01 -02 |
| CON-LEG101-LR-7340 |  | Installation of Medium Voltage Switchgears [Local – 01 Segment-02] | 7d | 2027-05-03 | 2027-05-10 | CON-LEG101-PR-1450, CON-LEG101-LR-7250, CON-LEG101-PR-1300 |  |  |  | -90d | 0d | Normally Open Point (R M U) 13.8 kv for Outdoor type according to the Saudi Electric Company specifications and requirements. [0.67]; Excavator [48 h]; Truck [48 h]; Bucket [48 h]; Compactor [48 h]; Labor [100 h]; Skilled Labor [50 h]; Driver [50 h]; Eq. Operator [150 h]; Electrician [100 h] | 40,200 |  | A4430 |  | L01 -02 |
| CON-LEG101-LR-7690 |  | Installation of Cable Termination [Local – 01 Segment-02] | 5d | 2027-05-11 | 2027-05-20 | CON-LEG101-LR-7340, CON-LEG101-PR-1450, CON-LEG101-PR-1300 |  |  |  | -90d | 0d | Cable Termination for 13.8 kv (3-C)x 50 mm² CU /XLPE/PVC, Unarmored.; Labor [50 h]; Skilled Labor [50 h]; Electrician [50 h] |  |  | A4930 |  | L01 -02 |
|  | 3 | **LOCAL - 01 Segment-03 (From 2+133 to 3+200)** |  | 2025-12-28 | 2027-06-16 |  |  |  |  |  |  |  |  |  |  |  |  |
|  | 7 | **Road Works** |  | 2025-12-28 | 2026-09-10 |  |  |  |  |  |  |  |  |  |  |  |  |
|  | 1 | **Earthworks and Site Grading** |  | 2025-12-28 | 2026-09-10 |  |  |  |  |  |  |  |  |  |  |  |  |
| CON-LEG101-LR-2860 |  | Parcrels Excavation for Roadway [Local – 01 Segment-03] | 18d | 2025-12-28 A | 2026-09-10 A | CON-LEG101-LR-1540, CON-LEG101-EN-1570, CON-LEG101-EN-1580, CON-LEG101-EN-1590, CON-LEG101-EN-1600, CON-LEG101-EN-1610, CON-LEG101-EN-3440 | 100% | 2026-03-17 | 2026-04-12 |  |  | Parcrels Excavation for cuttings (all types of soil) [8278.19]; Loader [144 h]; Water Tanker [144 h]; Grader [144 h]; Truck [144 h]; Road Roller [144 h]; Labor [600 h]; Driver [1200 h]; Eq. Operator [1800 h] | 16,556.38 | 16,556.38 | A1330 | 1 | L01-03 |
| CON-LEG101-LR-4710 |  | Embankments to the parcels for roads [Local – 01 Segment-03] | 21d | 2025-12-28 A | 2026-07-08 A | CON-LEG101-LR-4270, CON-LEG101-EN-1570, CON-LEG101-EN-1580, CON-LEG101-EN-1590, CON-LEG101-EN-1600, CON-LEG101-EN-1610, CON-LEG101-EN-3440, CON-LEG101-LR-4570 | 100% | 2026-05-06 | 2026-06-04 |  |  | Embankments to the parcels [6341.22]; Excavator [96 h]; Bulldozer [96 h]; Water Tanker [96 h]; Grader [96 h]; Truck [96 h]; Bucket [96 h]; Compactor [96 h]; Labor [400 h]; Driver [400 h]; Eq. Operator [1000 h] | 190,236.6 | 190,236.6 | A1750 | 1 | L01-03 |
| CON-LEG101-LR-1540 |  | Excavation for Roadway [Local – 01 Segment-03] | 21d | 2026-03-28 A | 2026-07-05 A | CON-LEG101-SD-1000, CON-LEG101-LR-1450, CON-LEG101-EN-1570, CON-LEG101-EN-1580, CON-LEG101-EN-1590, CON-LEG101-EN-1600, CON-LEG101-EN-1610, CON-LEG101-EN-3440, CON-LEG101-LR-2760 | 100% | 2026-04-26 | 2026-05-20 |  |  | Excavation for Roadway, fences and bridge, cuttings including dump locations (all types of soil) [12808.9]; Loader [144 h]; Water Tanker [144 h]; Grader [144 h]; Truck [144 h]; Road Roller [144 h]; Labor [600 h]; Driver [1200 h]; Eq. Operator [1800 h] | 25,617.86 | 25,617.86 | A1120 | 1 | L01-03 |
| CON-LEG101-LR-4270 |  | Embankments to the roads [Local – 01 Segment-03] | 21d | 2026-03-30 A | 2026-07-05 A | CON-LEG101-LR-2860, CON-LEG101-EN-1570, CON-LEG101-EN-1580, CON-LEG101-EN-1590, CON-LEG101-EN-1600, CON-LEG101-EN-1610, CON-LEG101-EN-3440 | 100% | 2026-06-10 | 2026-07-05 |  |  | Embankments to the roads , fences and bridge. [8921.65]; Excavator [96 h]; Bulldozer [96 h]; Water Tanker [96 h]; Grader [96 h]; Truck [96 h]; Bucket [96 h]; Compactor [96 h]; Labor [400 h]; Driver [400 h]; Eq. Operator [1000 h] | 267,649.5 | 267,649.5 | A1540 | 1 | L01-03 |
|  | 2 | **Asphalt Work** |  | 2026-06-17 | 2026-07-26 |  |  |  |  |  |  |  |  |  |  |  |  |
| CON-LEG101-LR-5600 |  | Subgrade [Local – 01 Segment-03] | 14d | 2026-06-17 A | 2026-07-13 A | CON-LEG101-LR-3520, CON-LEG101-LR-11060, CON-LEG101-LR-4710, CON-LEG101-LR-2860, CON-LEG101-LR-4270, CON-LEG101-LR-4710 FF, CON-LEG101-LR-4220, CON-LEG101-LR-3430, CON-LEG101-EN-3440 | 100% | 2026-09-26 | 2026-10-12 |  |  | Subgrade [3749.15]; Loader [48 h]; Water Tanker [48 h]; Grader [48 h]; Truck [48 h]; Road Roller [48 h]; Labor [50 h]; Driver [100 h]; Eq. Operator [150 h] | 119,972.8 | 119,972.8 | A1950 | 1 | L01-03 |
| CON-LEG101-LR-5700 |  | Aggregate base course [Local – 01 Segment-03] | 10d | 2026-07-11 A | 2026-07-23 A | CON-LEG101-LR-11120, CON-LEG101-LR-5600, CON-LEG101-PR-1490, CON-LEG101-EN-3470, CON-LEG101-LR-7690 | 100% | 2027-01-13 | 2027-01-24 |  |  | Excavator [27 h]; Water Tanker [29.33 h]; Truck [96 h]; Road Roller [48 h]; Asphalt Paver [48 h]; Driver [150 h]; Eq. Operator [150 h]; Aggregate base course [2499.44 M3] | 149,966.4 | 149,966.4 | A2080 | 1 | L01-03 |
| CON-LEG101-LR-5800 |  | Prime Coat (MC1) [Local – 01 Segment-03] | 8d | 2026-07-18 A | 2026-07-25 A | CON-LEG101-LR-5700 | 100% | 2027-01-27 | 2027-02-04 |  |  | Bituminous base course (Grading I - Class A), including Prime Coat (MC1) according to drawings [249.94]; Water Tanker [24 h]; Grader [48 h]; Truck [48 h]; Road Roller [48 h]; Asphalt Paver [48 h]; Labor [50 h]; Driver [100 h]; Eq. Operator [150 h] | 144,965.2 | 144,965.2 | A2220 | 1 | L01-03 |
| CON-LEG101-LR-5900 |  | Bituminous Base Course [Local – 01 Segment-03] | 8d | 2026-07-19 A | 2026-07-26 A | CON-LEG101-LR-5800, CON-LEG101-PR-1510, CON-LEG101-LR-5890 | 100% | 2027-02-06 | 2027-02-18 |  |  | Bituminous base course (Grading I - Class A), including Prime Coat (MC1) according to drawings [583.2]; Water Tanker [32 h]; Truck [240 h]; Road Roller [240 h]; Asphalt Paver [48 h]; Labor [450 h]; Driver [300 h]; Eq. Operator [300 h] | 338,256 | 338,256 | A2330 | 1 | L01-03 |

| ID | WBS | Activity | Duration | Start | Finish | Predecessors | Complete | Planned start | Planned finish | Total float | Free float | Resources | Cost | Actual cost | Mapping Sheet Activity ID | % A | JEDDAH 1 - Area Name |
| --- | --- | --- | --- | --- | --- | --- | --- | --- | --- | --- | --- | --- | --- | --- | --- | --- | --- |
|  | 8 | **Electrical Works** |  | 2026-06-20 | 2027-06-16 |  |  |  |  |  |  |  |  |  |  |  |  |
|  | 2 | **Medium Voltage** |  | 2026-06-20 | 2027-06-16 |  |  |  |  |  |  |  |  |  |  |  |  |
| CON-LEG101-LR-6990 |  | Installation of Medium Voltage Cables Duct Banks [Local – 01 Segment-03] | 5d | 2026-06-20 A | 2026-07-14 A | CON-LEG101-PR-1400, CON-LEG101-LR-6900, CON-LEG101-PR-1320 | 100% | 2027-01-10 | 2027-01-14 |  |  | Truck [48 h]; Bucket [48 h]; Compactor [48 h]; Labor [50 h]; Driver [50 h]; Eq. Operator [100 h]; Carpenter [50 h]; Steel Fixer [50 h]; Mason [50 h]; Electrician [50 h]; Duct bank for (1) cables [52.76]; Duct bank for (2) cables [10.05]; Duct bank for (4) cables [7.54] | 20,528.2 | 20,528.2 | A3930 | 1 | L01-03 |
| CON-LEG101-LR-6900 |  | Excavation for Medium Voltage trench [Local – 01 Segment-03] | 4d | 2027-05-22 | 2027-05-25 | CON-LEG101-PR-1880, CON-LEG101-LR-4220, CON-LEG101-LR-3430, CON-LEG101-EN-1660, CON-LEG101-EN-3440, CON-LEG101-LR-5700 |  |  |  | -90d | 0d | "Excavation for Trench size 90cm wide and 80cm deep [407.42]; Excavator [80 h]; Truck [144 h]; Labor [600 h]; Driver [150 h]; Eq. Operator [150 h] | 16,296.8 |  | A3780 |  | L01-03 |
| CON-LEG101-LR-7080 |  | Installation of Medium Voltage Cables [Local – 01 Segment-03] | 7d | 2027-05-26 | 2027-06-02 | CON-LEG101-LR-6990 |  |  |  | -90d | 0d | Cable 13.8 kV (3-C)x 50 mm² CU /XLPE/PVC, Unarmored; Excavator [28 h]; Truck [48 h]; Bucket [48 h]; Compactor [48 h]; Labor [100 h]; Skilled Labor [50 h]; Driver [50 h]; Eq. Operator [150 h]; Electrician [100 h]; Cable 13.8 kV 3Cx 500 mm² Al XLPE,/LLDPE / Unarmored [1457.25] | 320,595 |  | A4060 |  | L01-03 |
| CON-LEG101-LR-7170 |  | Installation of Straight joints cables [Local – 01 Segment-03] | 2d | 2027-06-03 | 2027-06-05 | CON-LEG101-PR-1450, CON-LEG101-LR-7080, CON-LEG101-PR-1300 |  |  |  | -90d | 0d | Excavator [8 h]; Truck [48 h]; Bucket [48 h]; Compactor [48 h]; Labor [100 h]; Skilled Labor [50 h]; Driver [50 h]; Eq. Operator [150 h]; Electrician [100 h]; Straight joints cables for 13.8 kv 3Cx 500 mm², Al /XLPE/LLDPE [3.62] | 10,136 |  | A4180 |  | L01-03 |
| CON-LEG101-LR-7260 |  | Installation of Cable Termination for 13.8 kv 3Cx 500 mm², Al /XLPE/LLDPE [Local – 01 Segment-03] | 3d | 2027-06-06 | 2027-06-08 | CON-LEG101-PR-1450, CON-LEG101-LR-7170, CON-LEG101-PR-1300 |  |  |  | -90d | 0d | Labor [50 h]; Skilled Labor [50 h]; Electrician [50 h]; Cable Termination for 13.8 kv 3Cx 500 mm², Al /XLPE/LLDPE [2.81] | 7,868 |  | A4300 |  | L01-03 |
| CON-LEG101-LR-7350 |  | Installation of Medium Voltage Switchgears [Local – 01 Segment-03] | 4d | 2027-06-09 | 2027-06-13 | CON-LEG101-PR-1450, CON-LEG101-LR-7260, CON-LEG101-PR-1300 |  |  |  | -90d | 0d | Normally Open Point (R M U) 13.8 kv for Outdoor type according to the Saudi Electric Company specifications and requirements. [1.34]; Excavator [28 h]; Truck [48 h]; Bucket [48 h]; Compactor [48 h]; Labor [100 h]; Skilled Labor [50 h]; Driver [50 h]; Eq. Operator [150 h]; Electrician [100 h] | 80,400 |  | A4440 |  | L01-03 |
| CON-LEG101-LR-7700 |  | Installation of Cable Termination [Local – 01 Segment-03] | 3d | 2027-06-14 | 2027-06-16 | CON-LEG101-LR-7350, CON-LEG101-PR-1450, CON-LEG101-PR-1300 |  |  |  | -90d | 14d | Cable Termination for 13.8 kv (3-C)x 50 mm² CU /XLPE/PVC, Unarmored.; Labor [50 h]; Skilled Labor [50 h]; Electrician [50 h] |  |  | A4940 |  | L01-03 |
|  | 4 | **Local – 02** |  | 2025-12-08 | 2027-06-05 |  |  |  |  |  |  |  |  |  |  |  |  |
|  | 7 | **Road Works** |  | 2025-12-08 | 2026-06-21 |  |  |  |  |  |  |  |  |  |  |  |  |
|  | 1 | **Earthworks and Site Grading** |  | 2025-12-08 | 2026-06-18 |  |  |  |  |  |  |  |  |  |  |  |  |
| CON-LEG101-LR-2950 |  | Parcrels Excavation for Roadway [Local – 02 ] | 18d | 2025-12-08 A | 2026-01-05 A | CON-LEG101-LR-1630, CON-LEG101-EN-1570, CON-LEG101-EN-1580, CON-LEG101-EN-1590, CON-LEG101-EN-1600, CON-LEG101-EN-1610, CON-LEG101-EN-3440, CON-LEG101-LR-2860, CON-LEG101-LR-4710 | 100% | 2026-06-22 | 2026-07-12 |  |  | Parcrels Excavation for cuttings (all types of soil) [8278.19]; Loader [96 h]; Water Tanker [96 h]; Grader [96 h]; Truck [96 h]; Road Roller [96 h]; Labor [400 h]; Driver [800 h]; Eq. Operator [1200 h] | 16,556.38 | 16,556.38 | A1340 | 1 | L02 |
| CON-LEG101-LR-4780 |  | Embankments to the parcels for roads [Local – 02 ] | 14d | 2025-12-13 A | 2026-06-18 A | CON-LEG101-LR-4310, CON-LEG101-EN-1570, CON-LEG101-EN-1580, CON-LEG101-EN-1590, CON-LEG101-EN-1600, CON-LEG101-EN-1610, CON-LEG101-EN-3440, CON-LEG101-LR-4710 | 100% | 2026-08-06 | 2026-08-22 |  |  | Embankments to the parcels [6341.22]; Excavator [56 h]; Bulldozer [96 h]; Water Tanker [42 h]; Grader [96 h]; Truck [96 h]; Bucket [96 h]; Compactor [96 h]; Labor [200 h]; Driver [200 h]; Eq. Operator [500 h] | 190,236.6 | 190,236.6 | A1760 | 1 | L02 |
| CON-LEG101-LR-1630 |  | Excavation for Roadway [Local – 02 ] | 21d | 2025-12-24 A | 2025-12-29 A | CON-LEG101-SD-1000, CON-LEG101-LR-1360, CON-LEG101-EN-1570, CON-LEG101-EN-1580, CON-LEG101-EN-1590, CON-LEG101-EN-1600, CON-LEG101-EN-1610, CON-LEG101-EN-3440, CON-LEG101-LR-1540 SS+5d | 100% | 2026-03-05 | 2026-04-04 |  |  | Excavation for Roadway, fences and bridge, cuttings including dump locations (all types of soil) [8867.72]; Loader [96 h]; Water Tanker [96 h]; Grader [96 h]; Truck [96 h]; Road Roller [96 h]; Labor [400 h]; Driver [800 h]; Eq. Operator [1200 h] | 17,735.44 | 17,735.44 | A1130 | 1 | L02 |
| CON-LEG101-LR-4310 |  | Embankments to the roads [Local – 02 ] | 21d | 2025-12-29 A | 2026-01-03 A | CON-LEG101-LR-2950, CON-LEG101-EN-1570, CON-LEG101-EN-1580, CON-LEG101-EN-1590, CON-LEG101-EN-1600, CON-LEG101-EN-1610, CON-LEG101-EN-3440 | 100% | 2026-06-01 | 2026-06-25 |  |  | Embankments to the roads , fences and bridge. [6176.53]; Excavator [48 h]; Bulldozer [48 h]; Water Tanker [47.71 h]; Grader [48 h]; Truck [48 h]; Bucket [48 h]; Compactor [48 h]; Labor [200 h]; Driver [200 h]; Eq. Operator [500 h] | 185,295.9 | 185,295.9 | A1550 | 1 | L02 |
|  | 2 | **Asphalt Work** |  | 2026-01-12 | 2026-06-21 |  |  |  |  |  |  |  |  |  |  |  |  |
| CON-LEG101-LR-5610 |  | Subgrade [Local – 02 ] | 7d | 2026-01-12 A | 2026-01-25 A | CON-LEG101-LR-3530, CON-LEG101-LR-11170, CON-LEG101-LR-4780, CON-LEG101-LR-1630, CON-LEG101-LR-2950, CON-LEG101-LR-4310, CON-LEG101-LR-4780 FF, CON-LEG101-LR-4230, CON-LEG101-LR-3440, CON-LEG101-EN-3440 | 100% | 2026-07-06 | 2026-07-14 |  |  | Subgrade [2499.44]; Loader [48 h]; Water Tanker [28 h]; Grader [48 h]; Truck [48 h]; Road Roller [48 h]; Labor [50 h]; Driver [100 h]; Eq. Operator [150 h] | 79,982.08 | 79,982.08 | A1960 | 1 | L02 |
| CON-LEG101-LR-5710 |  | Aggregate base course [Local – 02 ] | 9d | 2026-06-09 A | 2026-06-18 A | CON-LEG101-LR-11220, CON-LEG101-LR-5610, CON-LEG101-PR-1490, CON-LEG101-EN-3470 | 100% | 2026-09-19 | 2026-09-30 |  |  | Excavator [27 h]; Water Tanker [23 h]; Truck [96 h]; Road Roller [48 h]; Asphalt Paver [48 h]; Driver [150 h]; Eq. Operator [150 h]; Aggregate base course [1666.29 M3] | 99,977.4 | 99,977.4 | A2090 | 1 | L02 |
| CON-LEG101-LR-5810 |  | Prime Coat (MC1) [Local – 02 ] | 2d | 2026-06-11 A | 2026-06-20 A | CON-LEG101-LR-5710, CON-LEG101-LR-5900 | 100% | 2027-01-16 | 2027-01-17 |  |  | Bituminous base course (Grading I - Class A), including Prime Coat (MC1) according to drawings [166.65]; Water Tanker [40 h]; Grader [48 h]; Truck [48 h]; Road Roller [48 h]; Asphalt Paver [48 h]; Labor [50 h]; Driver [100 h]; Eq. Operator [150 h] | 96,657 | 96,657 | A2230 | 1 | L02 |
| CON-LEG101-LR-5910 |  | Bituminous Base Course [Local – 02 ] | 4d | 2026-06-15 A | 2026-06-21 A | CON-LEG101-LR-5810, CON-LEG101-PR-1510 | 100% | 2027-01-18 | 2027-01-21 |  |  | Bituminous base course (Grading I - Class A), including Prime Coat (MC1) according to drawings [388.8]; Water Tanker [30 h]; Truck [240 h]; Road Roller [240 h]; Asphalt Paver [48 h]; Labor [450 h]; Driver [300 h]; Eq. Operator [300 h] | 225,504 | 225,504 | A2340 | 1 | L02 |
|  | 8 | **Electrical Works** |  | 2026-05-31 | 2027-06-05 |  |  |  |  |  |  |  |  |  |  |  |  |
|  | 2 | **Medium Voltage** |  | 2026-05-31 | 2027-06-05 |  |  |  |  |  |  |  |  |  |  |  |  |
| CON-LEG101-LR-7000 |  | Installation of Medium Voltage Cables Duct Banks [Local – 02 ] | 8d | 2026-05-31 A | 2026-06-09 A | CON-LEG101-PR-1400, CON-LEG101-LR-6910, CON-LEG101-PR-1320 | 100% | 2026-11-15 | 2026-11-23 |  |  | Truck [48 h]; Bucket [48 h]; Compactor [48 h]; Labor [50 h]; Driver [50 h]; Eq. Operator [100 h]; Carpenter [50 h]; Steel Fixer [50 h]; Mason [50 h]; Electrician [50 h]; Duct bank for (1) cables [73.87]; Duct bank for (2) cables [14.07]; Duct bank for (4) cables [10.55] | 28,736.9 | 28,736.9 | A3940 | 1 | L02 |
| CON-LEG101-LR-6910 |  | Excavation for Medium Voltage trench [Local – 02 ] | 8d | 2027-04-12 | 2027-04-20 | CON-LEG101-PR-1880, CON-LEG101-LR-6890, CON-LEG101-LR-3440, CON-LEG101-LR-4230, CON-LEG101-EN-1660, CON-LEG101-EN-3440 |  |  |  | -169d | 0d | "Excavation for Trench size 90cm wide and 80cm deep [570.4]; Excavator [240 h]; Truck [240 h]; Labor [1000 h]; Driver [250 h]; Eq. Operator [250 h] | 22,816 |  | A3790 |  | L02 |
| CON-LEG101-LR-7090 |  | Installation of Medium Voltage Cables [Local – 02 ] | 13d | 2027-04-21 | 2027-05-05 | CON-LEG101-LR-7000 |  |  |  | -169d | 0d | Cable 13.8 kV (3-C)x 50 mm² CU /XLPE/PVC, Unarmored [3.35]; Excavator [96 h]; Truck [96 h]; Bucket [96 h]; Compactor [96 h]; Labor [200 h]; Skilled Labor [100 h]; Driver [100 h]; Eq. Operator [300 h]; Electrician [200 h]; Cable 13.8 kV 3Cx 500 mm² Al XLPE,/LLDPE / Unarmored [2040.15] | 450,508 |  | A4070 |  | L02 |
| CON-LEG101-LR-7180 |  | Installation of Straight joints cables [Local – 02 ] | 6d | 2027-05-06 | 2027-05-12 | CON-LEG101-PR-1450, CON-LEG101-LR-7090, CON-LEG101-PR-1300 |  |  |  | -169d | 0d | Excavator [40 h]; Truck [48 h]; Bucket [48 h]; Compactor [48 h]; Labor [100 h]; Skilled Labor [50 h]; Driver [50 h]; Eq. Operator [150 h]; Electrician [100 h]; Straight joints cables for 13.8 kv 3Cx 500 mm², Al /XLPE/LLDPE [5.07] | 14,196 |  | A4190 |  | L02 |
| CON-LEG101-LR-7270 |  | Installation of Cable Termination for 13.8 kv 3Cx 500 mm², Al /XLPE/LLDPE [Local – 02 ] | 8d | 2027-05-13 | 2027-05-26 | CON-LEG101-PR-1450, CON-LEG101-LR-7180, CON-LEG101-PR-1300 |  |  |  | -169d | 0d | Labor [50 h]; Skilled Labor [50 h]; Electrician [50 h]; Cable Termination for 13.8 kv 3Cx 500 mm², Al /XLPE/LLDPE [3.94] | 11,032 |  | A4310 |  | L02 |
| CON-LEG101-LR-7360 |  | Installation of Medium Voltage Switchgears [Local – 02 ] | 5d | 2027-05-27 | 2027-06-01 | CON-LEG101-PR-1450, CON-LEG101-LR-7270, CON-LEG101-PR-1300 |  |  |  | -169d | 0d | Normally Open Point (R M U) 13.8 kv for Outdoor type according to the Saudi Electric Company specifications and requirements. [1.34]; Excavator [25 h]; Truck [48 h]; Bucket [48 h]; Compactor [48 h]; Labor [100 h]; Skilled Labor [50 h]; Driver [50 h]; Eq. Operator [150 h]; Electrician [100 h] | 80,400 |  | A4450 |  | L02 |
| CON-LEG101-LR-7710 |  | Installation of Cable Termination [Local – 02 ] | 3d | 2027-06-02 | 2027-06-05 | CON-LEG101-LR-7360, CON-LEG101-PR-1450, CON-LEG101-PR-1300 |  |  |  | -169d | 0d | Cable Termination for 13.8 kv (3-C)x 50 mm² CU /XLPE/PVC, Unarmored. [1.34]; Labor [50 h]; Skilled Labor [50 h]; Electrician [50 h] | 2,680 |  | A4950 |  | L02 |

| ID | WBS | Activity | Duration | Start | Finish | Predecessors | Complete | Planned start | Planned finish | Total float | Free float | Resources | Cost | Actual cost | Mapping Sheet Activity ID | % A | JEDDAH 1 - Area Name |
| --- | --- | --- | --- | --- | --- | --- | --- | --- | --- | --- | --- | --- | --- | --- | --- | --- | --- |
|  | 2 | **Local – 03** |  | 2025-12-08 | 2027-06-28 |  |  |  |  |  |  |  |  |  |  |  |  |
|  | 7 | **Road Works** |  | 2025-12-08 | 2026-09-10 |  |  |  |  |  |  |  |  |  |  |  |  |
|  | 1 | **Earthworks and Site Grading** |  | 2025-12-08 | 2026-09-10 |  |  |  |  |  |  |  |  |  |  |  |  |
| CON-LEG101-LR-3040 |  | Parcrels Excavation for Roadway [Local – 03 ] | 14d | 2025-12-08 A | 2026-03-30 A | CON-LEG101-LR-1740, CON-LEG101-EN-1570, CON-LEG101-EN-1580, CON-LEG101-EN-1590, CON-LEG101-EN-1600, CON-LEG101-EN-1610, CON-LEG101-EN-3440, CON-LEG101-LR-2950 | 100% | 2026-07-13 | 2026-07-28 |  |  | Parcrels Excavation for cuttings (all types of soil) [8278.19]; Loader [48 h]; Water Tanker [48 h]; Grader [48 h]; Truck [48 h]; Road Roller [48 h]; Labor [100 h]; Driver [200 h]; Eq. Operator [300 h] | 16,556.38 | 16,556.38 | A1350 | 1 | L03 |
| CON-LEG101-LR-4820 |  | Embankments to the parcels for roads [Local – 03 ] | 16d | 2025-12-13 A | 2026-09-10 A | CON-LEG101-LR-4360, CON-LEG101-EN-1570, CON-LEG101-EN-1580, CON-LEG101-EN-1590, CON-LEG101-EN-1600, CON-LEG101-EN-1610, CON-LEG101-EN-3440 | 100% | 2026-08-16 | 2026-09-02 |  |  | Embankments to the parcels [6341.22]; Excavator [46 h]; Bulldozer [48 h]; Water Tanker [48 h]; Grader [48 h]; Truck [48 h]; Bucket [48 h]; Compactor [48 h]; Labor [100 h]; Driver [100 h]; Eq. Operator [250 h] | 190,236.6 | 190,236.6 | A1770 | 1 | L03 |
| CON-LEG101-LR-1740 |  | Excavation for Roadway [Local – 03 ] | 14d | 2026-01-05 A | 2026-01-08 A | CON-LEG101-LR-1630, CON-LEG101-SD-1000, CON-LEG101-EN-1570, CON-LEG101-EN-1580, CON-LEG101-EN-1590, CON-LEG101-EN-1600, CON-LEG101-EN-1610, CON-LEG101-EN-3440 | 100% | 2026-02-25 | 2026-03-14 |  |  | Excavation for Roadway, fences and bridge, cuttings including dump locations (all types of soil) [5911.81]; Loader [96 h]; Water Tanker [96 h]; Grader [96 h]; Truck [96 h]; Road Roller [96 h]; Labor [400 h]; Driver [800 h]; Eq. Operator [1200 h] | 11,823.62 | 11,823.62 | A1140 | 1 | L03 |
| CON-LEG101-LR-4360 |  | Embankments to the roads [Local – 03 ] | 15d | 2026-01-06 A | 2026-03-31 A | CON-LEG101-LR-3040, CON-LEG101-EN-1570, CON-LEG101-EN-1580, CON-LEG101-EN-1590, CON-LEG101-EN-1600, CON-LEG101-EN-1610, CON-LEG101-EN-3440 | 100% | 2026-05-21 | 2026-06-13 |  |  | Embankments to the roads , fences and bridge. [4117.69]; Excavator [36 h]; Bulldozer [48 h]; Water Tanker [37.2 h]; Grader [48 h]; Truck [48 h]; Bucket [48 h]; Compactor [48 h]; Labor [200 h]; Driver [200 h]; Eq. Operator [500 h] | 123,530.7 | 123,530.7 | A1560 | 1 | L03 |
|  | 2 | **Asphalt Work** |  | 2026-01-29 | 2026-08-04 |  |  |  |  |  |  |  |  |  |  |  |  |
| CON-LEG101-LR-5620 |  | Subgrade [Local – 03 ] | 4d | 2026-01-29 A | 2026-04-30 A | CON-LEG101-LR-11270, CON-LEG101-LR-1740, CON-LEG101-LR-3040, CON-LEG101-LR-4360, CON-LEG101-LR-4820, CON-LEG101-LR-4240, CON-LEG101-EN-3440 | 100% | 2026-07-09 | 2026-07-13 |  |  | Subgrade [1749.6]; Loader [48 h]; Water Tanker [16 h]; Grader [48 h]; Truck [48 h]; Road Roller [48 h]; Labor [75 h]; Driver [150 h]; Eq. Operator [225 h] | 55,987.2 | 55,987.2 | A1970 | 1 | L03 |
| CON-LEG101-LR-5720 |  | Aggregate base course [Local – 03 ] | 4d | 2026-07-28 A | 2026-07-30 A | CON-LEG101-LR-11330, CON-LEG101-LR-5620, CON-LEG101-PR-1490, CON-LEG101-EN-3470 | 100% | 2026-11-04 | 2026-11-09 |  |  | Excavator [24 h]; Water Tanker [32 h]; Truck [96 h]; Road Roller [48 h]; Asphalt Paver [48 h]; Driver [150 h]; Eq. Operator [150 h]; Aggregate base course [1166.4 M3] | 69,984 | 69,984 | A2100 | 1 | L03 |
| CON-LEG101-LR-5820 |  | Prime Coat (MC1) [Local – 03 ] | 2d | 2026-08-02 A | 2026-08-02 A | CON-LEG101-LR-5720, CON-LEG101-LR-5810 | 100% | 2027-02-03 | 2027-02-04 |  |  | Bituminous base course (Grading I - Class A), including Prime Coat (MC1) according to drawings [116.64]; Water Tanker [40 h]; Grader [48 h]; Truck [48 h]; Road Roller [48 h]; Asphalt Paver [48 h]; Labor [50 h]; Driver [100 h]; Eq. Operator [150 h] | 67,651.2 | 67,651.2 | A2240 | 1 | L03 |
| CON-LEG101-LR-5920 |  | Bituminous Base Course [Local – 03 ] | 3d | 2026-08-03 A | 2026-08-04 A | CON-LEG101-LR-5820, CON-LEG101-PR-1510 | 100% | 2027-02-06 | 2027-02-08 |  |  | Bituminous base course (Grading I - Class A), including Prime Coat (MC1) according to drawings [272.16]; Water Tanker [20 h]; Truck [240 h]; Road Roller [240 h]; Asphalt Paver [48 h]; Labor [450 h]; Driver [300 h]; Eq. Operator [300 h] | 157,852.8 | 157,852.8 | A2350 | 1 | L03 |
|  | 8 | **Electrical Works** |  | 2026-04-21 | 2027-06-28 |  |  |  |  |  |  |  |  |  |  |  |  |
|  | 2 | **Medium Voltage** |  | 2026-04-21 | 2027-06-28 |  |  |  |  |  |  |  |  |  |  |  |  |
| CON-LEG101-LR-7010 |  | Installation of Medium Voltage Cables Duct Banks [Local – 03 ] | 4d | 2026-04-21 A | 2026-05-07 A | CON-LEG101-PR-1400, CON-LEG101-LR-6920, CON-LEG101-PR-1320 | 100% | 2026-12-03 | 2026-12-07 |  |  | Truck [48 h]; Bucket [48 h]; Compactor [48 h]; Labor [50 h]; Driver [50 h]; Eq. Operator [100 h]; Carpenter [50 h]; Steel Fixer [50 h]; Mason [50 h]; Electrician [50 h]; Duct bank for (1) cables [17.59]; Duct bank for (2) cables [3.35]; Duct bank for (4) cables [2.51] | 6,841.3 | 6,841.3 | A3950 | 1 | L03 |
| CON-LEG101-LR-6920 |  | Excavation for Medium Voltage trench [Local – 03 ] | 3d | 2027-06-06 | 2027-06-08 | CON-LEG101-PR-1880, CON-LEG101-LR-6910, CON-LEG101-LR-2120, CON-LEG101-LR-4240, CON-LEG101-EN-1660, CON-LEG101-EN-3440, CON-LEG101-LR-7710 |  |  |  | -169d | 0d | "Excavation for Trench size 90cm wide and 80cm deep [135.81]; Excavator [30 h]; Truck [48 h]; Labor [200 h]; Driver [50 h]; Eq. Operator [50 h] | 5,432.4 |  | A3800 |  | L03 |
| CON-LEG101-LR-7100 |  | Installation of Medium Voltage Cables [Local – 03 ] | 5d | 2027-06-09 | 2027-06-14 | CON-LEG101-LR-7010 |  |  |  | -100d | 0d | Cable 13.8 kV (3-C)x 50 mm² CU /XLPE/PVC, Unarmored [3.35]; Excavator [16 h]; Truck [48 h]; Bucket [48 h]; Compactor [48 h]; Labor [100 h]; Skilled Labor [50 h]; Driver [50 h]; Eq. Operator [150 h]; Electrician [100 h]; Cable 13.8 kV 3Cx 500 mm² Al XLPE,/LLDPE / Unarmored [485.75] | 108,540 |  | A4080 |  | L03 |
| CON-LEG101-LR-7190 |  | Installation of Straight joints cables [Local – 03 ] | 2d | 2027-06-15 | 2027-06-16 | CON-LEG101-PR-1450, CON-LEG101-LR-7100, CON-LEG101-PR-1300 |  |  |  | -100d | 0d | Excavator [32 h]; Truck [48 h]; Bucket [48 h]; Compactor [48 h]; Labor [100 h]; Skilled Labor [50 h]; Driver [50 h]; Eq. Operator [150 h]; Electrician [100 h]; Straight joints cables for 13.8 kv 3Cx 500 mm², Al /XLPE/LLDPE [1.21] | 3,388 |  | A4200 |  | L03 |
| CON-LEG101-LR-7280 |  | Installation of Cable Termination for 13.8 kv 3Cx 500 mm², Al /XLPE/LLDPE [Local – 03 ] | 3d | 2027-06-17 | 2027-06-20 | CON-LEG101-PR-1450, CON-LEG101-LR-7190, CON-LEG101-PR-1300 |  |  |  | -100d | 0d | Labor [50 h]; Skilled Labor [50 h]; Electrician [50 h]; Cable Termination for 13.8 kv 3Cx 500 mm², Al /XLPE/LLDPE [0.94] | 2,632 |  | A4320 |  | L03 |
| CON-LEG101-LR-7370 |  | Installation of Medium Voltage Switchgears [Local – 03 ] | 4d | 2027-06-21 | 2027-06-24 | CON-LEG101-PR-1450, CON-LEG101-LR-7280, CON-LEG101-PR-1300 |  |  |  | -100d | 0d | Normally Open Point (R M U) 13.8 kv for Outdoor type according to the Saudi Electric Company specifications and requirements.; Excavator [32 h]; Truck [48 h]; Bucket [48 h]; Compactor [48 h]; Labor [100 h]; Skilled Labor [50 h]; Driver [50 h]; Eq. Operator [150 h]; Electrician [100 h] |  |  | A4460 |  | L03 |
| CON-LEG101-LR-7720 |  | Installation of Cable Termination [Local – 03 ] | 3d | 2027-06-26 | 2027-06-28 | CON-LEG101-LR-7370, CON-LEG101-PR-1450, CON-LEG101-PR-1300 |  |  |  | -100d | 4d | Cable Termination for 13.8 kv (3-C)x 50 mm² CU /XLPE/PVC, Unarmored. [1.34]; Labor [50 h]; Skilled Labor [50 h]; Electrician [50 h] | 2,680 |  | A4960 |  | L03 |
|  | 3 | **Local – 04** |  | 2025-12-10 | 2027-07-03 |  |  |  |  |  |  |  |  |  |  |  |  |
|  | 7 | **Road Works** |  | 2025-12-10 | 2027-01-31 |  |  |  |  |  |  |  |  |  |  |  |  |
|  | 1 | **Earthworks and Site Grading** |  | 2025-12-10 | 2027-01-02 |  |  |  |  |  |  |  |  |  |  |  |  |
| CON-LEG101-LR-3130 |  | Parcrels Excavation for Roadway [Local – 04 ] | 18d | 2025-12-10 A | 2026-09-17 A | CON-LEG101-LR-1800, CON-LEG101-EN-1570, CON-LEG101-EN-1580, CON-LEG101-EN-1590, CON-LEG101-EN-1600, CON-LEG101-EN-1610, CON-LEG101-EN-3440 | 100% | 2026-05-18 | 2026-06-11 |  |  | Parcrels Excavation for cuttings (all types of soil) [8278.19]; Loader [48 h]; Water Tanker [48 h]; Grader [48 h]; Truck [48 h]; Road Roller [48 h]; Labor [100 h]; Driver [200 h]; Eq. Operator [300 h] | 16,556.38 | 16,556.38 | A1360 | 0.65 | L04 |
| CON-LEG101-LR-4860 |  | Embankments to the parcels for roads [Local – 04 ] | 21d | 2025-12-14 A | 2026-09-19 A | CON-LEG101-LR-4420, CON-LEG101-EN-1570, CON-LEG101-EN-1580, CON-LEG101-EN-1590, CON-LEG101-EN-1600, CON-LEG101-EN-1610, CON-LEG101-EN-3440 | 100% | 2026-07-07 | 2026-07-30 |  |  | Embankments to the parcels [6341.22]; Excavator [48 h]; Bulldozer [48 h]; Water Tanker [48 h]; Grader [48 h]; Truck [48 h]; Bucket [48 h]; Compactor [48 h]; Labor [100 h]; Driver [100 h]; Eq. Operator [250 h] | 190,236.6 | 190,236.6 | A1780 | 0.95 | L04 |
| CON-LEG101-LR-1800 |  | Excavation for Roadway [Local – 04 ] | 15d | 2026-11-22 | 2026-12-08 | CON-LEG101-SD-1000, CON-LEG101-LR-1740, CON-LEG101-EN-1570, CON-LEG101-EN-1580, CON-LEG101-EN-1590, CON-LEG101-EN-1600, CON-LEG101-EN-1610, CON-LEG101-EN-3440 |  |  |  | -66.24d | 0d | Excavation for Roadway, fences and bridge, cuttings including dump locations (all types of soil) [5911.81]; Loader [48 h]; Water Tanker [48 h]; Grader [48 h]; Truck [48 h]; Road Roller [48 h]; Labor [100 h]; Driver [200 h]; Eq. Operator [300 h] | 11,823.62 |  | A1150 |  | L04 |
| CON-LEG101-LR-4420 |  | Embankments to the roads [Local – 04 ] | 21d | 2026-12-09 | 2027-01-02 | CON-LEG101-LR-3130, CON-LEG101-EN-1570, CON-LEG101-EN-1580, CON-LEG101-EN-1590, CON-LEG101-EN-1600, CON-LEG101-EN-1610, CON-LEG101-EN-3440 |  |  |  | 19d | 0d | Embankments to the roads , fences and bridge. [4117.69]; Excavator [48 h]; Bulldozer [48 h]; Water Tanker [48 h]; Grader [48 h]; Truck [48 h]; Bucket [48 h]; Compactor [48 h]; Labor [100 h]; Driver [100 h]; Eq. Operator [250 h] | 123,530.7 |  | A1570 |  | L04 |

| ID | WBS | Activity | Duration | Start | Finish | Predecessors | Complete | Planned start | Planned finish | Total float | Free float | Resources | Cost | Actual cost | Mapping Sheet Activity ID | JEDDAH 1 - Area Name | % A |
| --- | --- | --- | --- | --- | --- | --- | --- | --- | --- | --- | --- | --- | --- | --- | --- | --- | --- |
|  | 2 | **Asphalt Work** |  | 2027-01-03 | 2027-01-31 |  |  |  |  |  |  |  |  |  |  |  |  |
| CON-LEG101-LR-5630 |  | Subgrade [Local – 04 ] | 12d | 2027-01-03 | 2027-01-16 | CON-LEG101-LR-3540, CON-LEG101-LR-11380, CON-LEG101-LR-4860, CON-LEG101-LR-1800, CON-LEG101-LR-3130, CON-LEG101-LR-4420, CON-LEG101-LR-4250, CON-LEG101-LR-3450, CON-LEG101-EN-3440 |  |  |  | 19d | 1d | Subgrade [1749.6]; Loader [48 h]; Water Tanker [42 h]; Grader [48 h]; Truck [48 h]; Road Roller [48 h]; Labor [50 h]; Driver [100 h]; Eq. Operator [150 h] | 55,987.2 |  | A1980 | L04 |  |
| CON-LEG101-LR-5730 |  | Aggregate base course [Local – 04 ] | 8d | 2027-01-18 | 2027-01-26 | CON-LEG101-LR-11430, CON-LEG101-LR-5630, CON-LEG101-PR-1490, CON-LEG101-EN-3470 |  |  |  | 18d | 0d | Excavator [35 h]; Water Tanker [21 h]; Truck [96 h]; Road Roller [48 h]; Asphalt Paver [48 h]; Driver [150 h]; Eq. Operator [150 h]; Aggregate base course [1166.4 M3] | 69,984 |  | A2110 | L04 |  |
| CON-LEG101-LR-5830 |  | Prime Coat (MC1) [Local – 04 ] | 2d | 2027-01-27 | 2027-01-28 | CON-LEG101-LR-5730 |  |  |  | 18d | 0d | Bituminous base course (Grading I - Class A), including Prime Coat (MC1) according to drawings [116.64]; Water Tanker [40 h]; Grader [48 h]; Truck [48 h]; Road Roller [48 h]; Asphalt Paver [48 h]; Labor [50 h]; Driver [100 h]; Eq. Operator [150 h] | 67,651.2 |  | A2250 | L04 |  |
| CON-LEG101-LR-5930 |  | Bituminous Base Course [Local – 04 ] | 2d | 2027-01-30 | 2027-01-31 | CON-LEG101-LR-5830, CON-LEG101-PR-1510 |  |  |  | 18d | 122d | Bituminous base course (Grading I - Class A), including Prime Coat (MC1) according to drawings [272.16]; Water Tanker [20 h]; Truck [240 h]; Road Roller [240 h]; Asphalt Paver [48 h]; Labor [450 h]; Driver [300 h]; Eq. Operator [300 h] | 157,852.8 |  | A2360 | L04 |  |
|  | 1 | **Electric Works** |  | 2027-06-06 | 2027-07-03 |  |  |  |  |  |  |  |  |  |  |  |  |
|  | 2 | **Medium Voltage** |  | 2027-06-06 | 2027-07-03 |  |  |  |  |  |  |  |  |  |  |  |  |
| CON-LEG101-LR-6930 |  | Excavation for Medium Voltage trench [Local – 04 ] | 4d | 2027-06-06 | 2027-06-09 | CON-LEG101-PR-1880, CON-LEG101-LR-6920 SS, CON-LEG101-LR-3450, CON-LEG101-LR-4250, CON-LEG101-EN-1660, CON-LEG101-EN-3440 |  |  |  | -169d | 0d | "Excavation for Trench size 90cm wide and 80cm deep [81.49]; Excavator [32 h]; Truck [48 h]; Labor [200 h]; Driver [50 h]; Eq. Operator [50 h] | 3,259.6 |  | A3810 | L04 |  |
| CON-LEG101-LR-7020 |  | Installation of Medium Voltage Cables Duct Banks [Local – 04 ] | 3d | 2027-06-10 | 2027-06-13 | CON-LEG101-PR-1400, CON-LEG101-LR-6930, CON-LEG101-PR-1320 |  |  |  | -104d | 0d | Truck [48 h]; Bucket [48 h]; Compactor [48 h]; Labor [50 h]; Driver [50 h]; Eq. Operator [100 h]; Carpenter [50 h]; Steel Fixer [50 h]; Mason [50 h]; Electrician [50 h]; Duct bank for (1) cables [10.55]; Duct bank for (2) cables [2.01]; Duct bank for (4) cables [1.51] | 4,106.5 |  | A3960 | L04 |  |
| CON-LEG101-LR-7110 |  | Installation of Medium Voltage Cables [Local – 04 ] | 6d | 2027-06-14 | 2027-06-20 | CON-LEG101-LR-7020 |  |  |  | -104d | 0d | Cable 13.8 kV (3-C)x 50 mm² CU /XLPE/PVC, Unarmored; Excavator [18 h]; Truck [48 h]; Bucket [48 h]; Compactor [48 h]; Labor [100 h]; Skilled Labor [50 h]; Driver [50 h]; Eq. Operator [150 h]; Electrician [100 h]; Cable 13.8 kV 3Cx 500 mm² Al XLPE,/LLDPE / Unarmored [291.45] | 64,119 |  | A4090 | L04 |  |
| CON-LEG101-LR-7200 |  | Installation of Straight joints cables [Local – 04 ] | 3d | 2027-06-21 | 2027-06-23 | CON-LEG101-PR-1450, CON-LEG101-LR-7110, CON-LEG101-PR-1300 |  |  |  | -104d | 0d | Excavator [30 h]; Truck [48 h]; Bucket [48 h]; Compactor [48 h]; Labor [100 h]; Skilled Labor [50 h]; Driver [50 h]; Eq. Operator [150 h]; Electrician [100 h]; Straight joints cables for 13.8 kv 3Cx 500 mm², Al /XLPE/LLDPE [0.72] | 2,016 |  | A4210 | L04 |  |
| CON-LEG101-LR-7290 |  | Installation of Cable Termination for 13.8 kv 3Cx 500 mm², Al /XLPE/LLDPE [Local – 04 ] | 3d | 2027-06-24 | 2027-06-27 | CON-LEG101-PR-1450, CON-LEG101-LR-7200, CON-LEG101-PR-1300 |  |  |  | -104d | 0d | Labor [50 h]; Skilled Labor [50 h]; Electrician [50 h]; Cable Termination for 13.8 kv 3Cx 500 mm², Al /XLPE/LLDPE [0.57] | 1,596 |  | A4330 | L04 |  |
| CON-LEG101-LR-7380 |  | Installation of Medium Voltage Switchgears [Local – 04 ] | 2d | 2027-06-28 | 2027-06-29 | CON-LEG101-PR-1450, CON-LEG101-LR-7290, CON-LEG101-PR-1300 |  |  |  | -104d | 0d | Normally Open Point (R M U) 13.8 kv for Outdoor type according to the Saudi Electric Company specifications and requirements. [0.67]; Excavator [40 h]; Truck [48 h]; Bucket [48 h]; Compactor [48 h]; Labor [100 h]; Skilled Labor [50 h]; Driver [50 h]; Eq. Operator [150 h]; Electrician [100 h] | 40,200 |  | A4470 | L04 |  |
| CON-LEG101-LR-7730 |  | Installation of Cable Termination [Local – 04 ] | 3d | 2027-06-30 | 2027-07-03 | CON-LEG101-LR-7380, CON-LEG101-PR-1450, CON-LEG101-PR-1300 |  |  |  | -104d | 0d | Cable Termination for 13.8 kv (3-C)x 50 mm² CU /XLPE/PVC, Unarmored.; Labor [50 h]; Skilled Labor [50 h]; Electrician [50 h] |  |  | A4970 | L04 |  |
|  | 5 | **Local – 05** |  | 2025-12-04 | 2027-06-27 |  |  |  |  |  |  |  |  |  |  |  |  |
|  | 7 | **Road Works** |  | 2025-12-04 | 2026-09-09 |  |  |  |  |  |  |  |  |  |  |  |  |
|  | 1 | **Earthworks and Site Grading** |  | 2025-12-04 | 2026-09-09 |  |  |  |  |  |  |  |  |  |  |  |  |
| CON-LEG101-LR-3190 |  | Parcrels Excavation for Roadway [Local – 05 ] | 21d | 2025-12-04 A | 2026-09-09 A | CON-LEG101-LR-1900, CON-LEG101-EN-1570, CON-LEG101-EN-1580, CON-LEG101-EN-1590, CON-LEG101-EN-1600, CON-LEG101-EN-1610, CON-LEG101-EN-3440 | 100% | 2026-06-16 | 2026-07-09 |  |  | Parcrels Excavation for cuttings (all types of soil) [8278.19]; Loader [96 h]; Water Tanker [96 h]; Grader [96 h]; Truck [96 h]; Road Roller [96 h]; Labor [100 h]; Driver [200 h]; Eq. Operator [300 h] | 16,556.38 | 16,556.38 | A1370 | L05 | 1 |
| CON-LEG101-LR-4930 |  | Embankments to the parcels for roads [Local – 05 ] | 15d | 2025-12-07 A | 2026-07-09 A | CON-LEG101-LR-4520, CON-LEG101-EN-1570, CON-LEG101-EN-1580, CON-LEG101-EN-1590, CON-LEG101-EN-1600, CON-LEG101-EN-1610, CON-LEG101-EN-3440, CON-LEG101-LR-4860 | 100% | 2026-08-01 | 2026-08-17 |  |  | Embankments to the parcels [6341.22]; Excavator [69.6 h]; Bulldozer [96 h]; Water Tanker [62 h]; Grader [96 h]; Truck [96 h]; Bucket [96 h]; Compactor [96 h]; Labor [200 h]; Driver [200 h]; Eq. Operator [500 h] | 190,236.6 | 190,236.6 | A1790 | L05 | 1 |
| CON-LEG101-LR-1900 |  | Excavation for Roadway [Local – 05 ] | 21d | 2025-12-30 A | 2026-01-01 A | CON-LEG101-SD-1000, CON-LEG101-LR-1800, CON-LEG101-EN-1570, CON-LEG101-EN-1580, CON-LEG101-EN-1590, CON-LEG101-EN-1600, CON-LEG101-EN-1610, CON-LEG101-EN-3440 | 100% | 2026-04-06 | 2026-04-30 |  |  | Excavation for Roadway, fences and bridge, cuttings including dump locations (all types of soil) [8867.72]; Loader [96 h]; Water Tanker [96 h]; Grader [96 h]; Truck [96 h]; Road Roller [96 h]; Labor [200 h]; Driver [400 h]; Eq. Operator [600 h] | 17,735.44 | 17,735.44 | A1160 | L05 | 1 |
| CON-LEG101-LR-4520 |  | Embankments to the roads [Local – 05 ] | 18d | 2026-01-03 A | 2026-01-20 A | CON-LEG101-LR-3190, CON-LEG101-EN-1570, CON-LEG101-EN-1580, CON-LEG101-EN-1590, CON-LEG101-EN-1600, CON-LEG101-EN-1610, CON-LEG101-EN-3440 | 100% | 2026-04-26 | 2026-05-17 |  |  | Embankments to the roads , fences and bridge. [6176.53]; Excavator [48 h]; Bulldozer [48 h]; Water Tanker [48 h]; Grader [48 h]; Truck [48 h]; Bucket [48 h]; Compactor [48 h]; Labor [150 h]; Driver [150 h]; Eq. Operator [375 h] | 185,295.9 | 185,295.9 | A1580 | L05 | 1 |
|  | 2 | **Asphalt Work** |  | 2026-01-12 | 2026-06-23 |  |  |  |  |  |  |  |  |  |  |  |  |
| CON-LEG101-LR-5640 |  | Subgrade [Local – 05 ] | 10d | 2026-01-12 A | 2026-02-10 A | CON-LEG101-LR-3550, CON-LEG101-LR-11470, CON-LEG101-LR-4930, CON-LEG101-LR-1900, CON-LEG101-LR-3190, CON-LEG101-LR-4520, CON-LEG101-LR-4260, CON-LEG101-LR-3460, CON-LEG101-EN-3440 | 100% | 2026-09-12 | 2026-09-24 |  |  | Subgrade [2999.32]; Loader [48 h]; Water Tanker [15 h]; Grader [48 h]; Truck [48 h]; Road Roller [48 h]; Labor [50 h]; Driver [100 h]; Eq. Operator [150 h] | 95,978.24 | 95,978.24 | A1990 | L05 | 1 |
| CON-LEG101-LR-5740 |  | Aggregate base course [Local – 05 ] | 4d | 2026-05-31 A | 2026-06-21 A | CON-LEG101-LR-11520, CON-LEG101-LR-5640, CON-LEG101-PR-1490, CON-LEG101-EN-3470 | 100% | 2026-08-11 | 2026-08-16 |  |  | Excavator [24 h]; Water Tanker [32 h]; Truck [96 h]; Road Roller [48 h]; Asphalt Paver [48 h]; Driver [150 h]; Eq. Operator [150 h]; Aggregate base course [1999.55 M3] | 119,973 | 119,973 | A2120 | L05 | 1 |
| CON-LEG101-LR-5840 |  | Prime Coat (MC1) [Local – 05 ] | 2d | 2026-06-11 A | 2026-06-22 A | CON-LEG101-LR-5740 | 100% | 2026-08-22 | 2026-08-24 |  |  | Bituminous base course (Grading I - Class A), including Prime Coat (MC1) according to drawings [199.95]; Water Tanker [48 h]; Grader [48 h]; Truck [48 h]; Road Roller [48 h]; Asphalt Paver [48 h]; Labor [50 h]; Driver [100 h]; Eq. Operator [150 h] | 115,971 | 115,971 | A2260 | L05 | 1 |
| CON-LEG101-LR-5940 |  | Bituminous Base Course [Local – 05 ] | 2d | 2026-06-15 A | 2026-06-23 A | CON-LEG101-LR-5840 SS, CON-LEG101-PR-1510 | 100% | 2026-08-22 | 2026-08-24 |  |  | Bituminous base course (Grading I - Class A), including Prime Coat (MC1) according to drawings [466.56]; Water Tanker [20 h]; Truck [240 h]; Road Roller [240 h]; Asphalt Paver [48 h]; Labor [450 h]; Driver [300 h]; Eq. Operator [300 h] | 270,604.8 | 270,604.8 | A2370 | L05 | 1 |

| ID | WBS | Activity | Duration | Start | Finish | Predecessors | Complete | Planned start | Planned finish | Total float | Free float | Resources | Cost | Actual cost | Mapping Sheet Activity ID | % A | JEDDAH 1 - Area Name |
| --- | --- | --- | --- | --- | --- | --- | --- | --- | --- | --- | --- | --- | --- | --- | --- | --- | --- |
|  | 8 | **Electrical Works** |  | 2026-05-02 | 2027-06-27 |  |  |  |  |  |  |  |  |  |  |  |  |
|  | 2 | **Medium Voltage** |  | 2026-05-02 | 2027-06-27 |  |  |  |  |  |  |  |  |  |  |  |  |
| CON-LEG101-LR-7030 |  | Installation of Medium Voltage Cables Duct Banks [Local – 05 ] | 2d | 2026-05-02 A | 2026-05-07 A | CON-LEG101-PR-1400, CON-LEG101-LR-6940, CON-LEG101-PR-1320 | 100% | 2026-12-20 | 2026-12-21 |  |  | Truck [48 h]; Bucket [48 h]; Compactor [48 h]; Labor [50 h]; Driver [50 h]; Eq. Operator [100 h]; Carpenter [50 h]; Steel Fixer [50 h]; Mason [50 h]; Electrician [50 h]; Duct bank for (1) cables [45.73]; Duct bank for (2) cables [8.71]; Duct bank for (4) cables [6.53] | 17,789.1 | 17,789.1 | A3970 | 1 | L05 |
| CON-LEG101-LR-6940 |  | Excavation for Medium Voltage trench [Local – 05 ] | 4d | 2027-06-10 | 2027-06-14 | CON-LEG101-PR-1880, CON-LEG101-LR-4260, CON-LEG101-LR-11470, CON-LEG101-LR-3550, CON-LEG101-LR-3460, CON-LEG101-LR-6930, CON-LEG101-EN-1660, CON-LEG101-EN-3440 |  |  |  | -99d | 0d | "Excavation for Trench size 90cm wide and 80cm deep [353.1]; Excavator [50 h]; Truck [144 h]; Labor [600 h]; Driver [150 h]; Eq. Operator [150 h] | 14,124 |  | A3820 |  | L05 |
| CON-LEG101-LR-7120 |  | Installation of Medium Voltage Cables [Local – 05 ] | 4d | 2027-06-15 | 2027-06-19 | CON-LEG101-LR-7030 |  |  |  | -99d | 0d | Cable 13.8 kV (3-C)x 50 mm² CU /XLPE/PVC, Unarmored; Excavator [32 h]; Truck [48 h]; Bucket [48 h]; Compactor [48 h]; Labor [100 h]; Skilled Labor [50 h]; Driver [50 h]; Eq. Operator [150 h]; Electrician [100 h]; Cable 13.8 kV 3Cx 500 mm² Al XLPE,/LLDPE / Unarmored [1262.95] | 277,849 |  | A4100 |  | L05 |
| CON-LEG101-LR-7210 |  | Installation of Straight joints cables [Local – 05 ] | 2d | 2027-06-20 | 2027-06-21 | CON-LEG101-PR-1450, CON-LEG101-LR-7120, CON-LEG101-PR-1300 |  |  |  | -99d | 0d | Excavator [32 h]; Truck [48 h]; Bucket [48 h]; Compactor [48 h]; Labor [100 h]; Skilled Labor [50 h]; Driver [50 h]; Eq. Operator [150 h]; Electrician [100 h]; Straight joints cables for 13.8 kv 3Cx 500 mm², Al /XLPE/LLDPE [3.14] | 8,792 |  | A4220 |  | L05 |
| CON-LEG101-LR-7300 |  | Installation of Cable Termination for 13.8 kv 3Cx 500 mm², Al /XLPE/LLDPE [Local – 05 ] | 2d | 2027-06-22 | 2027-06-23 | CON-LEG101-PR-1450, CON-LEG101-LR-7210, CON-LEG101-PR-1300 |  |  |  | -99d | 0d | Labor [50 h]; Skilled Labor [50 h]; Electrician [50 h]; Cable Termination for 13.8 kv 3Cx 500 mm², Al /XLPE/LLDPE [2.44] | 6,832 |  | A4340 |  | L05 |
| CON-LEG101-LR-7390 |  | Installation of Medium Voltage Switchgears [Local – 05 ] | 2d | 2027-06-24 | 2027-06-26 | CON-LEG101-PR-1450, CON-LEG101-LR-7300, CON-LEG101-PR-1300 |  |  |  | -99d | 0d | Normally Open Point (R M U) 13.8 kv for Outdoor type according to the Saudi Electric Company specifications and requirements.; Excavator [40 h]; Truck [48 h]; Bucket [48 h]; Compactor [48 h]; Labor [100 h]; Skilled Labor [50 h]; Driver [50 h]; Eq. Operator [150 h]; Electrician [100 h] |  |  | A4480 |  | L05 |
| CON-LEG101-LR-7740 |  | Installation of Cable Termination [Local – 05 ] | 3d | 2027-06-24 | 2027-06-27 | CON-LEG101-LR-7390 SS, CON-LEG101-PR-1450, CON-LEG101-PR-1300 |  |  |  | -99d | 5d | Cable Termination for 13.8 kv (3-C)x 50 mm² CU /XLPE/PVC, Unarmored.; Labor [50 h]; Skilled Labor [50 h]; Electrician [50 h] |  |  | A4980 |  | L05 |
|  | 6 | **Local – 06** |  | 2025-12-08 | 2027-06-26 |  |  |  |  |  |  |  |  |  |  |  |  |
|  | 7 | **Road Works** |  | 2025-12-08 | 2026-08-20 |  |  |  |  |  |  |  |  |  |  |  |  |
|  | 1 | **Earthworks and Site Grading** |  | 2025-12-08 | 2026-08-20 |  |  |  |  |  |  |  |  |  |  |  |  |
| CON-LEG101-LR-3290 |  | Parcrels Excavation for Roadway [Local – 06 ] | 20d | 2025-12-08 A | 2026-08-19 A | CON-LEG101-LR-1990, CON-LEG101-EN-1570, CON-LEG101-EN-1580, CON-LEG101-EN-1590, CON-LEG101-EN-1600, CON-LEG101-EN-1610, CON-LEG101-EN-3440 | 100% | 2026-07-02 | 2026-07-25 |  |  | Parcrels Excavation for cuttings (all types of soil) [8278.19]; Loader [48 h]; Water Tanker [48 h]; Grader [48 h]; Truck [48 h]; Road Roller [48 h]; Labor [75 h]; Driver [150 h]; Eq. Operator [225 h] | 16,556.38 | 16,556.38 | A1380 | 1 | L06 |
| CON-LEG101-LR-5000 |  | Embankments to the parcels for roads [Local – 06 ] | 12d | 2025-12-14 A | 2026-08-20 A | CON-LEG101-LR-4540, CON-LEG101-EN-1570, CON-LEG101-EN-1580, CON-LEG101-EN-1590, CON-LEG101-EN-1600, CON-LEG101-EN-1610, CON-LEG101-EN-3440, CON-LEG101-LR-4930 | 100% | 2026-08-18 | 2026-08-31 |  |  | Embankments to the parcels [6341.22]; Excavator [48 h]; Bulldozer [48 h]; Water Tanker [24 h]; Grader [48 h]; Truck [48 h]; Bucket [48 h]; Compactor [48 h]; Labor [100 h]; Driver [100 h]; Eq. Operator [250 h] | 190,236.6 | 190,236.6 | A1800 | 1 | L06 |
| CON-LEG101-LR-1990 |  | Excavation for Roadway [Local – 06 ] | 14d | 2025-12-29 A | 2026-01-05 A | CON-LEG101-SD-1000, CON-LEG101-LR-1900, CON-LEG101-EN-1570, CON-LEG101-EN-1580, CON-LEG101-EN-1590, CON-LEG101-EN-1600, CON-LEG101-EN-1610, CON-LEG101-EN-3440 | 100% | 2026-04-30 | 2026-05-17 |  |  | Excavation for Roadway, fences and bridge, cuttings including dump locations (all types of soil) [5911.81]; Loader [48 h]; Water Tanker [48 h]; Grader [48 h]; Truck [48 h]; Road Roller [48 h]; Labor [50 h]; Driver [100 h]; Eq. Operator [150 h] | 11,823.62 | 11,823.62 | A1170 | 1 | L06 |
| CON-LEG101-LR-4540 |  | Embankments to the roads [Local – 06 ] | 20d | 2025-12-31 A | 2026-01-01 A | CON-LEG101-LR-3290, CON-LEG101-EN-1570, CON-LEG101-EN-1580, CON-LEG101-EN-1590, CON-LEG101-EN-1600, CON-LEG101-EN-1610, CON-LEG101-EN-3440 | 100% | 2026-05-13 | 2026-06-10 |  |  | Embankments to the roads , fences and bridge. [4117.69]; Excavator [36.33 h]; Bulldozer [48 h]; Water Tanker [38 h]; Grader [48 h]; Truck [48 h]; Bucket [48 h]; Compactor [48 h]; Labor [100 h]; Driver [100 h]; Eq. Operator [250 h] | 123,530.7 | 123,530.7 | A1590 | 1 | L06 |
|  | 2 | **Asphalt Work** |  | 2026-01-13 | 2026-07-06 |  |  |  |  |  |  |  |  |  |  |  |  |
| CON-LEG101-LR-5650 |  | Subgrade [Local – 06 ] | 6d | 2026-01-13 A | 2026-01-25 A | CON-LEG101-LR-3560, CON-LEG101-LR-11560, CON-LEG101-LR-5000, CON-LEG101-LR-1990, CON-LEG101-LR-3290, CON-LEG101-LR-4540, CON-LEG101-LR-4280, CON-LEG101-LR-3480, CON-LEG101-EN-3440 | 100% | 2026-09-13 | 2026-09-20 |  |  | Subgrade [1999.55]; Loader [48 h]; Water Tanker [20 h]; Grader [48 h]; Truck [48 h]; Road Roller [48 h]; Labor [50 h]; Driver [100 h]; Eq. Operator [150 h] | 63,985.6 | 63,985.6 | A2000 | 1 | L06 |
| CON-LEG101-LR-5750 |  | Aggregate base course [Local – 06 ] | 4d | 2026-06-27 A | 2026-06-29 A | CON-LEG101-LR-11610, CON-LEG101-LR-5650, CON-LEG101-PR-1490, CON-LEG101-EN-3470 | 100% | 2026-09-06 | 2026-09-10 |  |  | Excavator [24 h]; Water Tanker [32 h]; Truck [96 h]; Road Roller [48 h]; Asphalt Paver [48 h]; Driver [150 h]; Eq. Operator [150 h]; Aggregate base course [1333.03 M3] | 79,981.8 | 79,981.8 | A2130 | 1 | L06 |
| CON-LEG101-LR-5850 |  | Prime Coat (MC1) [Local – 06 ] | 2d | 2026-07-01 A | 2026-07-02 A | CON-LEG101-LR-5750 | 100% | 2026-09-10 | 2026-09-13 |  |  | Bituminous base course (Grading I - Class A), including Prime Coat (MC1) according to drawings [133.3]; Water Tanker [40 h]; Grader [48 h]; Truck [48 h]; Road Roller [48 h]; Asphalt Paver [48 h]; Labor [50 h]; Driver [100 h]; Eq. Operator [150 h] | 77,314 | 77,314 | A2270 | 1 | L06 |
| CON-LEG101-LR-5950 |  | Bituminous Base Course [Local – 06 ] | 3d | 2026-07-04 A | 2026-07-06 A | CON-LEG101-LR-5850, CON-LEG101-PR-1510 | 100% | 2026-09-13 | 2026-09-16 |  |  | Bituminous base course (Grading I - Class A), including Prime Coat (MC1) according to drawings [311.04]; Water Tanker [24 h]; Truck [240 h]; Road Roller [240 h]; Asphalt Paver [48 h]; Labor [450 h]; Driver [300 h]; Eq. Operator [300 h] | 180,403.2 | 180,403.2 | A2380 | 1 | L06 |
|  | 8 | **Electrical Works** |  | 2026-06-17 | 2027-06-26 |  |  |  |  |  |  |  |  |  |  |  |  |
|  | 2 | **Medium Voltage** |  | 2026-06-17 | 2027-06-26 |  |  |  |  |  |  |  |  |  |  |  |  |
| CON-LEG101-LR-7040 |  | Installation of Medium Voltage Cables Duct Banks [Local – 06 ] | 3d | 2026-06-17 A | 2026-06-18 A | CON-LEG101-LR-6950, CON-LEG101-PR-1320 | 100% | 2027-01-18 | 2027-01-20 |  |  | Truck [48 h]; Bucket [48 h]; Compactor [48 h]; Labor [50 h]; Driver [50 h]; Eq. Operator [100 h]; Carpenter [50 h]; Steel Fixer [50 h]; Mason [50 h]; Electrician [50 h]; Duct bank for (1) cables [42.21]; Duct bank for (2) cables [8.04]; Duct bank for (4) cables [6.03] | 16,421.7 | 16,421.7 | A3980 | 1 | L06 |
| CON-LEG101-LR-6950 |  | Excavation for Medium Voltage trench [Local – 06 ] | 3d | 2027-06-12 | 2027-06-14 | CON-LEG101-PR-1880, CON-LEG101-LR-4280, CON-LEG101-LR-11560, CON-LEG101-LR-3480, CON-LEG101-LR-3560, CON-LEG101-LR-6940 FF, CON-LEG101-EN-1660, CON-LEG101-EN-3440 |  |  |  | -98d | 0d | "Excavation for Trench size 90cm wide and 80cm deep [325.94]; Excavator [60 h]; Truck [144 h]; Labor [600 h]; Driver [150 h]; Eq. Operator [150 h] | 13,037.6 |  | A3830 |  | L06 |
| CON-LEG101-LR-7130 |  | Installation of Medium Voltage Cables [Local – 06 ] | 3d | 2027-06-15 | 2027-06-17 | CON-LEG101-LR-7040 |  |  |  | -98d | 0d | Cable 13.8 kV (3-C)x 50 mm² CU /XLPE/PVC, Unarmored [3.35]; Excavator [30 h]; Truck [48 h]; Bucket [48 h]; Compactor [48 h]; Labor [100 h]; Skilled Labor [50 h]; Driver [50 h]; Eq. Operator [150 h]; Electrician [100 h]; Cable 13.8 kV 3Cx 500 mm² Al XLPE,/LLDPE / Unarmored [1165.8] | 258,151 |  | A4110 |  | L06 |
| CON-LEG101-LR-7220 |  | Installation of Straight joints cables [Local – 06 ] | 2d | 2027-06-19 | 2027-06-20 | CON-LEG101-LR-7130, CON-LEG101-PR-1300 |  |  |  | -98d | 0d | Excavator [32 h]; Truck [48 h]; Bucket [48 h]; Compactor [48 h]; Labor [100 h]; Skilled Labor [50 h]; Driver [50 h]; Eq. Operator [150 h]; Electrician [100 h]; Straight joints cables for 13.8 kv 3Cx 500 mm², Al /XLPE/LLDPE [2.89] | 8,092 |  | A4230 |  | L06 |
| CON-LEG101-LR-7310 |  | Installation of Cable Termination for 13.8 kv 3Cx 500 mm², Al /XLPE/LLDPE [Local – 06 ] | 2d | 2027-06-21 | 2027-06-22 | CON-LEG101-PR-1450, CON-LEG101-LR-7220, CON-LEG101-PR-1300 |  |  |  | -98d | 0d | Labor [50 h]; Skilled Labor [50 h]; Electrician [50 h]; Cable Termination for 13.8 kv 3Cx 500 mm², Al /XLPE/LLDPE [2.25] | 6,300 |  | A4350 |  | L06 |
| CON-LEG101-LR-7400 |  | Installation of Medium Voltage Switchgears [Local – 06 ] | 2d | 2027-06-23 | 2027-06-24 | CON-LEG101-PR-1450, CON-LEG101-LR-7310, CON-LEG101-PR-1300 |  |  |  | -98d | 0d | Normally Open Point (R M U) 13.8 kv for Outdoor type according to the Saudi Electric Company specifications and requirements.; Excavator [40 h]; Truck [48 h]; Bucket [48 h]; Compactor [48 h]; Labor [100 h]; Skilled Labor [50 h]; Driver [50 h]; Eq. Operator [150 h]; Electrician [100 h] |  |  | A4490 |  | L06 |
| CON-LEG101-LR-7750 |  | Installation of Cable Termination [Local – 06 ] | 3d | 2027-06-23 | 2027-06-26 | CON-LEG101-LR-7400 SS, CON-LEG101-PR-1450, CON-LEG101-PR-1300 |  |  |  | -98d | 6d | Cable Termination for 13.8 kv (3-C)x 50 mm² CU /XLPE/PVC, Unarmored. [1.34]; Labor [50 h]; Skilled Labor [50 h]; Electrician [50 h] | 2,680 |  | A4990 |  | L06 |

| ID | WBS | Activity | Duration | Start | Finish | Predecessors | Complete | Remaining | Planned start | Planned finish | Total float | Free float | Expected finish | Resources | Cost | Actual cost | Mapping Sheet Activity ID | % A | JEDDAH 1 - Area Name |
| --- | --- | --- | --- | --- | --- | --- | --- | --- | --- | --- | --- | --- | --- | --- | --- | --- | --- | --- | --- |
|  | 7 | **Local – 07** |  | 2025-12-07 | 2027-06-24 |  |  |  |  |  |  |  |  |  |  |  |  |  |  |
|  | 7 | **Road Works** |  | 2025-12-07 | 2026-12-09 |  |  |  |  |  |  |  |  |  |  |  |  |  |  |
|  | 1 | **Earthworks and Site Grading** |  | 2025-12-07 | 2026-12-09 |  |  |  |  |  |  |  |  |  |  |  |  |  |  |
| CON-LEG101-LR-3380 |  | Parcrels Excavation for Roadway [Local – 07 ] | 14d | 2025-12-07 A | 2025-12-10 A | CON-LEG101-LR-2080, CON-LEG101-EN-1570, CON-LEG101-EN-1580, CON-LEG101-EN-1590, CON-LEG101-EN-1600, CON-LEG101-EN-1610, CON-LEG101-EN-3440 | 100% |  | 2026-07-14 | 2026-07-29 |  |  |  | Parcrels Excavation for cuttings (all types of soil) [8278.19]; Loader [48 h]; Water Tanker [48 h]; Grader [48 h]; Truck [48 h]; Road Roller [48 h]; Labor [50 h]; Driver [100 h]; Eq. Operator [150 h] | 16,556.38 | 16,556.38 | A1390 | 1 | L07 |
| CON-LEG101-LR-5070 |  | Embankments to the parcels for roads [Local – 07 ] | 14d | 2025-12-11 A | 2026-12-09 | CON-LEG101-LR-4550, CON-LEG101-EN-1570, CON-LEG101-EN-1580, CON-LEG101-EN-1590, CON-LEG101-EN-1600, CON-LEG101-EN-1610, CON-LEG101-EN-3440 | 98% | 0.28d | 2026-08-16 | 2026-08-31 | 63.72d | 0d | 2026-04-20 | Embankments to the parcels [6341.22]; Excavator [32 h]; Bulldozer [48 h]; Water Tanker [32 h]; Grader [48 h]; Truck [48 h]; Bucket [48 h]; Compactor [48 h]; Labor [100 h]; Driver [100 h]; Eq. Operator [250 h] | 190,236.6 | 186,431.87 | A1810 | 0.95 | L07 |
| CON-LEG101-LR-2080 |  | Excavation for Roadway [Local – 07 ] | 10d | 2026-01-01 A | 2026-01-07 A | CON-LEG101-SD-1000, CON-LEG101-LR-1990, CON-LEG101-EN-1570, CON-LEG101-EN-1580, CON-LEG101-EN-1590, CON-LEG101-EN-1600, CON-LEG101-EN-1610, CON-LEG101-EN-3440 | 100% |  | 2026-05-02 | 2026-05-13 |  |  |  | Excavation for Roadway, fences and bridge, cuttings including dump locations (all types of soil) [1970.6]; Loader [48 h]; Water Tanker [48 h]; Grader [48 h]; Truck [48 h]; Road Roller [48 h]; Labor [50 h]; Driver [100 h]; Eq. Operator [150 h] | 3,941.2 | 3,941.2 | A1180 | 1 | L07 |
| CON-LEG101-LR-4550 |  | Embankments to the roads [Local – 07 ] | 14d | 2026-01-08 A | 2026-01-24 A | CON-LEG101-LR-3380, CON-LEG101-EN-1570, CON-LEG101-EN-1580, CON-LEG101-EN-1590, CON-LEG101-EN-1600, CON-LEG101-EN-1610, CON-LEG101-EN-3440 | 100% |  | 2026-04-02 | 2026-04-19 |  |  |  | Embankments to the roads , fences and bridge. [1372.56]; Excavator [42.29 h]; Bulldozer [48 h]; Water Tanker [44.14 h]; Grader [48 h]; Truck [48 h]; Bucket [48 h]; Compactor [48 h]; Labor [100 h]; Driver [100 h]; Eq. Operator [250 h] | 41,176.8 | 41,176.8 | A1600 | 1 | L07 |
|  | 2 | **Asphalt Work** |  | 2026-01-24 | 2026-06-30 |  |  |  |  |  |  |  |  |  |  |  |  |  |  |
| CON-LEG101-LR-5660 |  | Subgrade [Local – 07 ] | 5d | 2026-01-24 A | 2026-01-26 A | CON-LEG101-LR-3570, CON-LEG101-LR-11650, CON-LEG101-LR-5070, CON-LEG101-LR-2080, CON-LEG101-LR-3380, CON-LEG101-LR-4550, CON-LEG101-LR-4290, CON-LEG101-LR-3490, CON-LEG101-EN-3440 | 100% |  | 2026-08-29 | 2026-09-03 |  |  |  | Subgrade [499.89]; Loader [48 h]; Water Tanker [20 h]; Grader [48 h]; Truck [48 h]; Road Roller [48 h]; Labor [50 h]; Driver [100 h]; Eq. Operator [150 h] | 15,996.48 | 15,996.48 | A2010 | 1 | L07 |
| CON-LEG101-LR-5760 |  | Aggregate base course [Local – 07 ] | 4d | 2026-06-21 A | 2026-06-23 A | CON-LEG101-LR-11700, CON-LEG101-LR-5660, CON-LEG101-PR-1490, CON-LEG101-EN-3470 | 100% |  | 2026-07-27 | 2026-08-01 |  |  |  | Excavator [24 h]; Water Tanker [32 h]; Truck [96 h]; Road Roller [48 h]; Asphalt Paver [48 h]; Driver [150 h]; Eq. Operator [150 h]; Aggregate base course [363.23 M3] | 21,793.8 | 21,793.8 | A2140 | 1 | L07 |
| CON-LEG101-LR-5860 |  | Prime Coat (MC1) [Local – 07 ] | 3d | 2026-06-27 A | 2026-06-28 A | CON-LEG101-LR-5760 | 100% |  | 2026-08-02 | 2026-08-05 |  |  |  | Bituminous base course (Grading I - Class A), including Prime Coat (MC1) according to drawings [33.33]; Water Tanker [30 h]; Grader [48 h]; Truck [48 h]; Road Roller [48 h]; Asphalt Paver [48 h]; Labor [50 h]; Driver [100 h]; Eq. Operator [150 h] | 19,331.4 | 19,331.4 | A2280 | 1 | L07 |
| CON-LEG101-LR-5960 |  | Bituminous Base Course [Local – 07 ] | 3d | 2026-06-27 A | 2026-06-30 A | CON-LEG101-LR-5860, CON-LEG101-PR-1510 | 100% |  | 2026-08-05 | 2026-08-09 |  |  |  | Bituminous base course (Grading I - Class A), including Prime Coat (MC1) according to drawings [77.76]; Water Tanker [24 h]; Truck [240 h]; Road Roller [240 h]; Asphalt Paver [48 h]; Labor [450 h]; Driver [300 h]; Eq. Operator [300 h] | 45,100.8 | 45,100.8 | A2390 | 1 | L07 |
|  | 8 | **Electrical Works** |  | 2026-05-20 | 2027-06-24 |  |  |  |  |  |  |  |  |  |  |  |  |  |  |
|  | 2 | **Medium Voltage** |  | 2026-05-20 | 2027-06-24 |  |  |  |  |  |  |  |  |  |  |  |  |  |  |
| CON-LEG101-LR-7050 |  | Installation of Medium Voltage Cables Duct Banks [Local – 07 ] | 3d | 2026-05-20 A | 2026-05-21 A | CON-LEG101-PR-1400, CON-LEG101-LR-6960, CON-LEG101-PR-1320 | 100% |  | 2027-01-04 | 2027-01-06 |  |  |  | Truck [48 h]; Bucket [48 h]; Compactor [48 h]; Labor [50 h]; Driver [50 h]; Eq. Operator [100 h]; Carpenter [50 h]; Steel Fixer [50 h]; Mason [50 h]; Electrician [50 h]; Duct bank for (1) cables [3.52]; Duct bank for (2) cables [0.67]; Duct bank for (4) cables [0.5] | 1,367.4 | 1,367.4 | A3990 | 1 | L07 |
| CON-LEG101-LR-6960 |  | Excavation for Medium Voltage trench [Local – 07 ] | 3d | 2027-06-12 | 2027-06-14 | CON-LEG101-PR-1880, CON-LEG101-LR-4290, CON-LEG101-LR-11650, CON-LEG101-LR-3490, CON-LEG101-LR-3570, CON-LEG101-LR-6950 SS, CON-LEG101-EN-1660, CON-LEG101-EN-3440 |  |  |  |  | -97d | 0d |  | "Excavation for Trench size 90cm wide and 80cm deep [27.16]; Excavator [30 h]; Truck [48 h]; Labor [200 h]; Driver [50 h]; Eq. Operator [50 h] | 1,086.4 |  | A3840 |  | L07 |
| CON-LEG101-LR-7140 |  | Installation of Medium Voltage Cables [Local – 07 ] | 3d | 2027-06-15 | 2027-06-17 | CON-LEG101-LR-7050 |  |  |  |  | -97d | 0d |  | Cable 13.8 kV (3-C)x 50 mm² CU /XLPE/PVC, Unarmored [3.35]; Excavator [30 h]; Truck [48 h]; Bucket [48 h]; Compactor [48 h]; Labor [100 h]; Skilled Labor [50 h]; Driver [50 h]; Eq. Operator [150 h]; Electrician [100 h]; Cable 13.8 kV 3Cx 500 mm² Al XLPE,/LLDPE / Unarmored [97.15] | 23,048 |  | A4120 |  | L07 |
| CON-LEG101-LR-7230 |  | Installation of Straight joints cables [Local – 07 ] | 2d | 2027-06-19 | 2027-06-20 | CON-LEG101-PR-1450, CON-LEG101-LR-7140, CON-LEG101-PR-1300 |  |  |  |  | -97d | 0d |  | Excavator [32 h]; Truck [48 h]; Bucket [48 h]; Compactor [48 h]; Labor [100 h]; Skilled Labor [50 h]; Driver [50 h]; Eq. Operator [150 h]; Electrician [100 h]; Straight joints cables for 13.8 kv 3Cx 500 mm², Al /XLPE/LLDPE [0.24] | 672 |  | A4240 |  | L07 |
| CON-LEG101-LR-7320 |  | Installation of Cable Termination for 13.8 kv 3Cx 500 mm², Al /XLPE/LLDPE [Local – 07 ] | 2d | 2027-06-21 | 2027-06-22 | CON-LEG101-PR-1450, CON-LEG101-LR-7230, CON-LEG101-PR-1300 |  |  |  |  | -97d | 0d |  | Labor [50 h]; Skilled Labor [50 h]; Electrician [50 h]; Cable Termination for 13.8 kv 3Cx 500 mm², Al /XLPE/LLDPE [0.19] | 532 |  | A4360 |  | L07 |
| CON-LEG101-LR-7410 |  | Installation of Medium Voltage Switchgears [Local – 07 ] | 2d | 2027-06-23 | 2027-06-24 | CON-LEG101-PR-1450, CON-LEG101-LR-7320, CON-LEG101-PR-1300 |  |  |  |  | -97d | 0d |  | Normally Open Point (R M U) 13.8 kv for Outdoor type according to the Saudi Electric Company specifications and requirements.; Excavator [40 h]; Truck [48 h]; Bucket [48 h]; Compactor [48 h]; Labor [100 h]; Skilled Labor [50 h]; Driver [50 h]; Eq. Operator [150 h]; Electrician [100 h] |  |  | A4500 |  | L07 |
| CON-LEG101-LR-7760 |  | Installation of Cable Termination [Local – 07 ] | 2d | 2027-06-23 | 2027-06-24 | CON-LEG101-LR-7410 SS, CON-LEG101-PR-1450, CON-LEG101-PR-1300 |  |  |  |  | -97d | 7d |  | Cable Termination for 13.8 kv (3-C)x 50 mm² CU /XLPE/PVC, Unarmored. [1.34]; Labor [50 h]; Skilled Labor [50 h]; Electrician [50 h] | 2,680 |  | A5000 |  | L07 |
|  | 8 | **Local – 08** |  | 2025-12-23 | 2026-08-03 |  |  |  |  |  |  |  |  |  |  |  |  |  |  |
|  | 7 | **Road Works** |  | 2025-12-23 | 2026-08-03 |  |  |  |  |  |  |  |  |  |  |  |  |  |  |
|  | 1 | **Earthworks and Site Grading** |  | 2025-12-23 | 2026-07-21 |  |  |  |  |  |  |  |  |  |  |  |  |  |  |
| CON-LEG101-LR-3470 |  | Parcrels Excavation for Roadway [Local – 08 ] | 10d | 2025-12-23 A | 2026-07-20 A | CON-LEG101-LR-2180, CON-LEG101-EN-1570, CON-LEG101-EN-1580, CON-LEG101-EN-1590, CON-LEG101-EN-1600, CON-LEG101-EN-1610, CON-LEG101-EN-3440, CON-LEG101-LR-3380 | 100% |  | 2026-07-04 | 2026-07-15 |  |  |  | Parcrels Excavation for cuttings (all types of soil) [8278.19]; Loader [96 h]; Water Tanker [77.6 h]; Grader [96 h]; Truck [96 h]; Road Roller [96 h]; Labor [100 h]; Driver [200 h]; Eq. Operator [300 h] | 16,556.38 | 16,556.38 | A1400 | 1 | L08 |
| CON-LEG101-LR-4560 |  | Embankments to the roads [Local – 08 ] | 8d | 2026-04-05 A | 2026-04-27 A | CON-LEG101-LR-3470, CON-LEG101-EN-1570, CON-LEG101-EN-1580, CON-LEG101-EN-1590, CON-LEG101-EN-1600, CON-LEG101-EN-1610, CON-LEG101-EN-3440 | 100% |  | 2026-06-13 | 2026-06-22 |  |  |  | Embankments to the roads , fences and bridge. [5490.25]; Excavator [32 h]; Bulldozer [48 h]; Water Tanker [24 h]; Grader [48 h]; Truck [48 h]; Bucket [48 h]; Compactor [48 h]; Labor [150 h]; Driver [150 h]; Eq. Operator [375 h] | 164,707.5 | 164,707.5 | A1610 | 1 | L08 |
| CON-LEG101-LR-5140 |  | Embankments to the parcels for roads [Local – 08 ] | 10d | 2026-04-05 A | 2026-07-21 A | CON-LEG101-LR-4560, CON-LEG101-EN-1570, CON-LEG101-EN-1580, CON-LEG101-EN-1590, CON-LEG101-EN-1600, CON-LEG101-EN-1610, CON-LEG101-EN-3440 | 100% |  | 2026-06-22 | 2026-07-04 |  |  |  | Embankments to the parcels [6341.22]; Excavator [64 h]; Bulldozer [96 h]; Water Tanker [64 h]; Grader [96 h]; Truck [96 h]; Bucket [96 h]; Compactor [96 h]; Labor [300 h]; Driver [300 h]; Eq. Operator [750 h] | 190,236.6 | 190,236.6 | A1820 | 1 | L08 |
| CON-LEG101-LR-2180 |  | Excavation for Roadway [Local – 08 ] | 10d | 2026-04-07 A | 2026-04-26 A | CON-LEG101-SD-1000, CON-LEG101-LR-1900 SS+10d, CON-LEG101-EN-1570, CON-LEG101-EN-1580, CON-LEG101-EN-1590, CON-LEG101-EN-1600, CON-LEG101-EN-1610, CON-LEG101-EN-3440 | 100% |  | 2026-05-19 | 2026-06-04 |  |  |  | Excavation for Roadway, fences and bridge, cuttings including dump locations (all types of soil) [7882.42]; Loader [96 h]; Water Tanker [96 h]; Grader [96 h]; Truck [96 h]; Road Roller [96 h]; Labor [100 h]; Driver [200 h]; Eq. Operator [300 h] | 15,764.84 | 15,764.84 | A1190 | 1 | L08 |

| ID | WBS | Activity | Duration | Start | Finish | Predecessors | Complete | Remaining | Planned start | Planned finish | Total float | Free float | Resources | Cost | Actual cost | Mapping Sheet Activity ID | % A | JEDDAH 1 - Area Name |
| --- | --- | --- | --- | --- | --- | --- | --- | --- | --- | --- | --- | --- | --- | --- | --- | --- | --- | --- |
|  | 2 | **Asphalt Work** |  | 2026-06-17 | 2026-08-03 |  |  |  |  |  |  |  |  |  |  |  |  |  |
| CON-LEG101-LR-5670 |  | Subgrade [Local – 08 ] | 7d | 2026-06-17 A | 2026-06-30 A | CON-LEG101-LR-11740, CON-LEG101-LR-5140, CON-LEG101-LR-2180, CON-LEG101-LR-3470, CON-LEG101-LR-4560, CON-LEG101-LR-4300, CON-LEG101-EN-3440 | 100% |  | 2026-08-02 | 2026-08-09 |  |  | Subgrade [2249.49]; Loader [48 h]; Water Tanker [25 h]; Grader [48 h]; Truck [48 h]; Road Roller [48 h]; Labor [50 h]; Driver [100 h]; Eq. Operator [150 h] | 71,983.68 | 71,983.68 | A2020 | 1 | L08 |
| CON-LEG101-LR-5770 |  | Aggregate base course [Local – 08 ] | 4d | 2026-07-25 A | 2026-07-28 A | CON-LEG101-LR-11790, CON-LEG101-LR-5670, CON-LEG101-PR-1490, CON-LEG101-EN-3470 | 100% |  | 2026-09-01 | 2026-09-05 |  |  | Excavator [30 h]; Water Tanker [30 h]; Truck [96 h]; Road Roller [48 h]; Asphalt Paver [48 h]; Driver [150 h]; Eq. Operator [150 h]; Aggregate base course [1499.66 M3] | 89,979.6 | 89,979.6 | A2150 | 1 | L08 |
| CON-LEG101-LR-5870 |  | Prime Coat (MC1) [Local – 08 ] | 2d | 2026-08-01 A | 2026-08-01 A | CON-LEG101-LR-5770 | 100% |  | 2026-09-02 | 2026-09-03 |  |  | Bituminous base course (Grading I - Class A), including Prime Coat (MC1) according to drawings [149.97]; Water Tanker [20 h]; Grader [48 h]; Truck [48 h]; Road Roller [48 h]; Asphalt Paver [48 h]; Labor [50 h]; Driver [100 h]; Eq. Operator [150 h] | 86,982.6 | 86,982.6 | A2290 | 1 | L08 |
| CON-LEG101-LR-5970 |  | Bituminous Base Course [Local – 08 ] | 2d | 2026-08-02 A | 2026-08-03 A | CON-LEG101-LR-5870, CON-LEG101-PR-1510 | 100% |  | 2026-09-05 | 2026-09-06 |  |  | Bituminous base course (Grading I - Class A), including Prime Coat (MC1) according to drawings [349.92]; Water Tanker [30 h]; Truck [240 h]; Road Roller [240 h]; Asphalt Paver [48 h]; Labor [450 h]; Driver [300 h]; Eq. Operator [300 h] | 202,953.6 | 202,953.6 | A2400 | 1 | L08 |
|  | 6 | **Deep Infrastructure network** |  | 2025-12-27 | 2027-02-01 |  |  |  |  |  |  |  |  |  |  |  |  |  |
|  | 1 | **Local – 01** |  | 2025-12-27 | 2026-11-25 |  |  |  |  |  |  |  |  |  |  |  |  |  |
|  | 1 | **LOCAL - 01 Segment-01 (From 0+000 to 1+066)** |  | 2025-12-27 | 2026-11-24 |  |  |  |  |  |  |  |  |  |  |  |  |  |
|  | 1 | **Stormwater Utilities** |  | 2025-12-27 | 2026-11-24 |  |  |  |  |  |  |  |  |  |  |  |  |  |
|  | 2 | **Pipe Work** |  | 2025-12-27 | 2026-03-17 |  |  |  |  |  |  |  |  |  |  |  |  |  |
| CON-LEG101-LR-3580 |  | Excavation for Stormwater Utilities Network [Local – 01 Segment-01] | 10d | 2025-12-27 A | 2026-01-22 A | CON-LEG101-LR-4070, CON-LEG101-SD-1000, CON-LEG101-LR-1360, CON-LEG101-LR-2760, CON-LEG101-EN-1780, CON-LEG101-EN-1790, CON-LEG101-EN-1800, CON-LEG101-EN-3440 | 100% |  | 2026-03-10 | 2026-03-26 |  |  | Stormwater Utilities - GRP Pipes - 400 mm Depth exceeds 2.50m; Stormwater Utilities - GRP Pipes - 500 mm Depth: 3.51m - 4.50m; Stormwater Utilities - GRP Pipes - 500 mm Depth exceeds 4.50m; Stormwater Utilities - GRP Pipes - 600 mm Depth: 1.51m - 2.50m; Stormwater Utilities - GRP Pipes - 600 mm Depth: 2.51m - 3.50m; Stormwater Utilities - GRP Pipes - 600 mm Depth: 3.51m - 4.50m; Stormwater Utilities - GRP Pipes - 600 mm Depth exceeds 4.50m; Stormwater Utilities - GRP Pipes - 700 mm Depth: 1.51m - 2.50m; Stormwater Utilities - GRP Pipes - 700 mm Depth: 2.51m - 3.50m; Stormwater Utilities - GRP Pipes - 700 mm Depth exceeds 3.50m; Stormwater Utilities - GRP Pipes - 800 mm Depth: 1.51m - 2.50m; Stormwater Utilities - GRP Pipes - 800 mm Depth: 2.51m - 3.50m; Stormwater Utilities - GRP Pipes - 800 mm Depth exceeds 3.50m; Excavator [48 h]; Water Tanker [48 h]; Truck [96 h]; Crane [48 h]; Labor [400 h]; Driver [300 h]; Eq. Operator [200 h]; Stormwater Utilities - GRP Pipes - 400 mm Diameter Depth: 0.00 m - 1.50 m. [2.68]; Stormwater Utilities - GRP Pipes - 400 mm Depth: 1.51m - 2.50m [33.77]; Stormwater Utilities - GRP Pipes - 500 mm Depth: 0.00 m - 1.50 m. [2.68]; Stormwater Utilities - GRP Pipes - 500 mm Depth: 1.51m - 2.50m [70.14]; Stormwater Utilities - GRP Pipes - 500 mm Depth: 2.51m - 3.50m [29.28] | 92,439.4 | 92,439.4 | A14670 | 1 | L01 -01 |
| CON-LEG101-LR-3680 |  | Granular bedding for Stormwater Utilities Network [Local – 01 Segment-01] | 10d | 2025-12-28 A | 2026-01-24 A | CON-LEG101-EN-1780, CON-LEG101-LR-3580 | 100% |  | 2026-03-07 | 2026-03-18 |  |  | Stormwater Utilities - GRP Pipes - 400 mm Depth exceeds 2.50m; Stormwater Utilities - GRP Pipes - 500 mm Depth: 3.51m - 4.50m; Stormwater Utilities - GRP Pipes - 500 mm Depth exceeds 4.50m; Stormwater Utilities - GRP Pipes - 600 mm Depth: 1.51m - 2.50m; Stormwater Utilities - GRP Pipes - 600 mm Depth: 2.51m - 3.50m; Stormwater Utilities - GRP Pipes - 600 mm Depth: 3.51m - 4.50m; Stormwater Utilities - GRP Pipes - 600 mm Depth exceeds 4.50m; Stormwater Utilities - GRP Pipes - 700 mm Depth: 1.51m - 2.50m; Stormwater Utilities - GRP Pipes - 700 mm Depth: 2.51m - 3.50m; Stormwater Utilities - GRP Pipes - 700 mm Depth exceeds 3.50m; Stormwater Utilities - GRP Pipes - 800 mm Depth: 1.51m - 2.50m; Stormwater Utilities - GRP Pipes - 800 mm Depth: 2.51m - 3.50m; Stormwater Utilities - GRP Pipes - 800 mm Depth exceeds 3.50m; Loader [48 h]; Truck [48 h]; Driver [100 h]; Eq. Operator [100 h]; Stormwater Utilities - GRP Pipes - 400 mm Diameter Depth: 0.00 m - 1.50 m. [0.67]; Stormwater Utilities - GRP Pipes - 400 mm Depth: 1.51m - 2.50m [8.44]; Stormwater Utilities - GRP Pipes - 500 mm Depth: 0.00 m - 1.50 m. [0.67]; Stormwater Utilities - GRP Pipes - 500 mm Depth: 1.51m - 2.50m [17.53]; Stormwater Utilities - GRP Pipes - 500 mm Depth: 2.51m - 3.50m [7.32] | 23,105.1 | 23,105.1 | A14780 | 1 | L01 -01 |
| CON-LEG101-LR-3780 |  | Installation of Pipe for Stormwater Utilities Network [Local – 01 Segment-01] | 10d | 2025-12-30 A | 2026-01-28 A | CON-LEG101-PR-2100, CON-LEG101-PR-2110, CON-LEG101-LR-3680, CON-LEG101-PR-1780, CON-LEG101-PR-1810 | 100% |  | 2026-05-19 | 2026-06-04 |  |  | Stormwater Utilities - GRP Pipes - 400 mm Depth exceeds 2.50m; Stormwater Utilities - GRP Pipes - 500 mm Depth: 3.51m - 4.50m; Stormwater Utilities - GRP Pipes - 500 mm Depth exceeds 4.50m; Stormwater Utilities - GRP Pipes - 600 mm Depth: 1.51m - 2.50m; Stormwater Utilities - GRP Pipes - 600 mm Depth: 2.51m - 3.50m; Stormwater Utilities - GRP Pipes - 600 mm Depth: 3.51m - 4.50m; Stormwater Utilities - GRP Pipes - 600 mm Depth exceeds 4.50m; Stormwater Utilities - GRP Pipes - 700 mm Depth: 1.51m - 2.50m; Stormwater Utilities - GRP Pipes - 700 mm Depth: 2.51m - 3.50m; Stormwater Utilities - GRP Pipes - 700 mm Depth exceeds 3.50m; Stormwater Utilities - GRP Pipes - 800 mm Depth: 1.51m - 2.50m; Stormwater Utilities - GRP Pipes - 800 mm Depth: 2.51m - 3.50m; Stormwater Utilities - GRP Pipes - 800 mm Depth exceeds 3.50m; Excavator [48 h]; Crane [48 h]; Labor [150 h]; Skilled Labor [100 h]; Eq. Operator [100 h]; Plumber [50 h]; Pipe Fitter [50 h]; Stormwater Utilities - GRP Pipes - 400 mm Diameter Depth: 0.00 m - 1.50 m. [6.03]; Stormwater Utilities - GRP Pipes - 400 mm Depth: 1.51m - 2.50m [75.98]; Stormwater Utilities - GRP Pipes - 500 mm Depth: 0.00 m - 1.50 m. [6.03]; Stormwater Utilities - GRP Pipes - 500 mm Depth: 1.51m - 2.50m [157.82]; Stormwater Utilities - GRP Pipes - 500 mm Depth: 2.51m - 3.50m [65.88] | 207,990.4 | 207,990.4 | A14890 | 1 | L01 -01 |
| CON-LEG101-LR-3980 |  | Granular Surround for Stormwater Utilities Network [Local – 01 Segment-01] | 4d | 2025-12-31 A | 2026-01-29 A | CON-LEG101-LR-3880, CON-LEG101-EN-3450 | 100% |  | 2026-06-06 | 2026-06-10 |  |  | Stormwater Utilities - GRP Pipes - 400 mm Depth exceeds 2.50m; Stormwater Utilities - GRP Pipes - 500 mm Depth: 3.51m - 4.50m; Stormwater Utilities - GRP Pipes - 500 mm Depth exceeds 4.50m; Stormwater Utilities - GRP Pipes - 600 mm Depth: 1.51m - 2.50m; Stormwater Utilities - GRP Pipes - 600 mm Depth: 2.51m - 3.50m; Stormwater Utilities - GRP Pipes - 600 mm Depth: 3.51m - 4.50m; Stormwater Utilities - GRP Pipes - 600 mm Depth exceeds 4.50m; Stormwater Utilities - GRP Pipes - 700 mm Depth: 1.51m - 2.50m; Stormwater Utilities - GRP Pipes - 700 mm Depth: 2.51m - 3.50m; Stormwater Utilities - GRP Pipes - 700 mm Depth exceeds 3.50m; Stormwater Utilities - GRP Pipes - 800 mm Depth: 1.51m - 2.50m; Stormwater Utilities - GRP Pipes - 800 mm Depth: 2.51m - 3.50m; Stormwater Utilities - GRP Pipes - 800 mm Depth exceeds 3.50m; Loader [48 h]; Truck [48 h]; Driver [50 h]; Eq. Operator [50 h]; Stormwater Utilities - GRP Pipes - 400 mm Diameter Depth: 0.00 m - 1.50 m. [0.67]; Stormwater Utilities - GRP Pipes - 400 mm Depth: 1.51m - 2.50m [8.44]; Stormwater Utilities - GRP Pipes - 500 mm Depth: 0.00 m - 1.50 m. [0.67]; Stormwater Utilities - GRP Pipes - 500 mm Depth: 1.51m - 2.50m [17.53]; Stormwater Utilities - GRP Pipes - 500 mm Depth: 2.51m - 3.50m [7.32] | 23,105.1 | 23,105.1 | A15110 | 1 | L01 -01 |
| CON-LEG101-LR-3880 |  | Testing for Stormwater Utilities Network [Local – 01 Segment-01] | 4d | 2026-01-02 A | 2026-03-12 A | CON-LEG101-LR-3780 | 100% |  | 2026-06-02 | 2026-06-07 |  |  | Stormwater Utilities - GRP Pipes - 400 mm Depth exceeds 2.50m; Stormwater Utilities - GRP Pipes - 500 mm Depth: 3.51m - 4.50m; Stormwater Utilities - GRP Pipes - 500 mm Depth exceeds 4.50m; Stormwater Utilities - GRP Pipes - 600 mm Depth: 1.51m - 2.50m; Stormwater Utilities - GRP Pipes - 600 mm Depth: 2.51m - 3.50m; Stormwater Utilities - GRP Pipes - 600 mm Depth: 3.51m - 4.50m; Stormwater Utilities - GRP Pipes - 600 mm Depth exceeds 4.50m; Stormwater Utilities - GRP Pipes - 700 mm Depth: 1.51m - 2.50m; Stormwater Utilities - GRP Pipes - 700 mm Depth: 2.51m - 3.50m; Stormwater Utilities - GRP Pipes - 700 mm Depth exceeds 3.50m; Stormwater Utilities - GRP Pipes - 800 mm Depth: 1.51m - 2.50m; Stormwater Utilities - GRP Pipes - 800 mm Depth: 2.51m - 3.50m; Stormwater Utilities - GRP Pipes - 800 mm Depth exceeds 3.50m; Labor [200 h]; Skilled Labor [100 h]; Pipe Fitter [100 h]; Stormwater Utilities - GRP Pipes - 400 mm Diameter Depth: 0.00 m - 1.50 m. [1.34]; Stormwater Utilities - GRP Pipes - 400 mm Depth: 1.51m - 2.50m [16.88]; Stormwater Utilities - GRP Pipes - 500 mm Depth: 0.00 m - 1.50 m. [1.34]; Stormwater Utilities - GRP Pipes - 500 mm Depth: 1.51m - 2.50m [35.07]; Stormwater Utilities - GRP Pipes - 500 mm Depth: 2.51m - 3.50m [14.64] | 46,216.7 | 46,216.7 | A15000 | 1 | L01 -01 |
| CON-LEG101-LR-4090 |  | Installation of Micron Marker Magnetic Tape [Local – 01 Segment-01] | 2d | 2026-01-12 A | 2026-03-15 A | CON-LEG101-LR-3980 | 100% |  | 2026-06-14 | 2026-06-16 |  |  | Stormwater Utilities - GRP Pipes - 400 mm Depth exceeds 2.50m; Stormwater Utilities - GRP Pipes - 500 mm Depth: 3.51m - 4.50m; Stormwater Utilities - GRP Pipes - 500 mm Depth exceeds 4.50m; Stormwater Utilities - GRP Pipes - 600 mm Depth: 1.51m - 2.50m; Stormwater Utilities - GRP Pipes - 600 mm Depth: 2.51m - 3.50m; Stormwater Utilities - GRP Pipes - 600 mm Depth: 3.51m - 4.50m; Stormwater Utilities - GRP Pipes - 600 mm Depth exceeds 4.50m; Stormwater Utilities - GRP Pipes - 700 mm Depth: 1.51m - 2.50m; Stormwater Utilities - GRP Pipes - 700 mm Depth: 2.51m - 3.50m; Stormwater Utilities - GRP Pipes - 700 mm Depth exceeds 3.50m; Stormwater Utilities - GRP Pipes - 800 mm Depth: 1.51m - 2.50m; Stormwater Utilities - GRP Pipes - 800 mm Depth: 2.51m - 3.50m; Stormwater Utilities - GRP Pipes - 800 mm Depth exceeds 3.50m; Labor [100 h]; Stormwater Utilities - GRP Pipes - 400 mm Diameter Depth: 0.00 m - 1.50 m. [0.67]; Stormwater Utilities - GRP Pipes - 400 mm Depth: 1.51m - 2.50m [8.44]; Stormwater Utilities - GRP Pipes - 500 mm Depth: 0.00 m - 1.50 m. [0.67]; Stormwater Utilities - GRP Pipes - 500 mm Depth: 1.51m - 2.50m [17.53]; Stormwater Utilities - GRP Pipes - 500 mm Depth: 2.51m - 3.50m [7.32] | 23,105.1 | 23,105.1 | A15220 | 1 | L01 -01 |
| CON-LEG101-LR-4200 |  | Backfilling to Subgrade Elevation [Local – 01 Segment-01] | 6d | 2026-01-13 A | 2026-03-17 A | CON-LEG101-LR-4090, CON-LEG101-EN-3440 | 100% |  | 2026-06-16 | 2026-06-23 |  |  | Stormwater Utilities - GRP Pipes - 400 mm Depth: 1.51m - 2.50m [16.88]; Stormwater Utilities - GRP Pipes - 400 mm Depth exceeds 2.50m; Stormwater Utilities - GRP Pipes - 500 mm Depth: 3.51m - 4.50m; Stormwater Utilities - GRP Pipes - 500 mm Depth exceeds 4.50m; Stormwater Utilities - GRP Pipes - 600 mm Depth: 1.51m - 2.50m; Stormwater Utilities - GRP Pipes - 600 mm Depth: 2.51m - 3.50m; Stormwater Utilities - GRP Pipes - 600 mm Depth: 3.51m - 4.50m; Stormwater Utilities - GRP Pipes - 600 mm Depth exceeds 4.50m; Stormwater Utilities - GRP Pipes - 700 mm Depth: 1.51m - 2.50m; Stormwater Utilities - GRP Pipes - 700 mm Depth: 2.51m - 3.50m; Stormwater Utilities - GRP Pipes - 700 mm Depth exceeds 3.50m; Stormwater Utilities - GRP Pipes - 800 mm Depth: 1.51m - 2.50m; Stormwater Utilities - GRP Pipes - 800 mm Depth: 2.51m - 3.50m; Stormwater Utilities - GRP Pipes - 800 mm Depth exceeds 3.50m; Excavator [48 h]; Water Tanker [48 h]; Road Roller [48 h]; Bucket [48 h]; Compactor [48 h]; Labor [150 h]; Driver [75 h]; Eq. Operator [300 h]; Stormwater Utilities - GRP Pipes - 400 mm Diameter Depth: 0.00 m - 1.50 m. [1.34]; Stormwater Utilities - GRP Pipes - 500 mm Depth: 0.00 m - 1.50 m. [1.34]; Stormwater Utilities - GRP Pipes - 500 mm Depth: 1.51m - 2.50m [35.07]; Stormwater Utilities - GRP Pipes - 500 mm Depth: 2.51m - 3.50m [14.64] | 46,216.7 | 46,216.7 | A15330 | 1 | L01 -01 |
|  | 1 | **Manhole** |  | 2025-12-27 | 2026-11-23 |  |  |  |  |  |  |  |  |  |  |  |  |  |
| CON-LEG101-LR-10890 |  | Excavation of Inlet Manholes [Local – 01 Segment-01] | 15d | 2025-12-27 A | 2026-01-22 A | CON-LEG101-LR-3580 | 100% |  | 2026-03-26 | 2026-04-13 |  |  | Stormwater Utilities - (ring 1200 mm internal dia.) MH depth 1.51 - 2.50m [1.1]; Stormwater Utilities - (ring 1200 mm internal dia.) MH depth 2.51 - 3.50m [0.43]; Stormwater Utilities - (ring 1500 mm internal dia.) MH depth 1.51 - 2.50m [0.2]; Stormwater Utilities - (ring 1200 mm internal dia.) MH depth 3.51 - 4.50m; Stormwater Utilities - (ring 1200 mm internal dia.) MH depth exceeds 4.50m; Stormwater Utilities - (ring 1500 mm internal dia.) MH depth exceeds 3.50m; Stormwater Utilities - (ring 1500 mm internal dia.) MH depth 2.51 - 3.50m | 29,675 | 29,675 |  | 1 | L01 -01 |
| CON-LEG101-LR-10900 |  | PC of Inlet Manholes [Local – 01 Segment-01] | 6d | 2026-01-14 A | 2026-01-25 A | CON-LEG101-LR-10890 | 100% |  | 2026-03-09 | 2026-03-16 |  |  | Stormwater Utilities - (ring 1200 mm internal dia.) MH depth 1.51 - 2.50m [0.73]; Stormwater Utilities - (ring 1200 mm internal dia.) MH depth 2.51 - 3.50m [0.29]; Stormwater Utilities - (ring 1500 mm internal dia.) MH depth 1.51 - 2.50m [0.14]; Stormwater Utilities - (ring 1200 mm internal dia.) MH depth 3.51 - 4.50m; Stormwater Utilities - (ring 1200 mm internal dia.) MH depth exceeds 4.50m; Stormwater Utilities - (ring 1500 mm internal dia.) MH depth exceeds 3.50m; Stormwater Utilities - (ring 1500 mm internal dia.) MH depth 2.51 - 3.50m | 19,920 | 19,920 |  | 1 | L01 -01 |
| CON-LEG101-LR-4320 |  | Installation of Inlet Manholes [Local – 01 Segment-01] | 14d | 2026-01-17 A | 2026-04-26 A | CON-LEG101-LR-10900, CON-LEG101-LR-3780, CON-LEG101-PR-1980 | 100% |  | 2026-06-10 | 2026-06-27 |  |  | Stormwater Utilities - (ring 1200 mm internal dia.) MH depth 3.51 - 4.50m; Stormwater Utilities - (ring 1200 mm internal dia.) MH depth exceeds 4.50m; Stormwater Utilities - (ring 1500 mm internal dia.) MH depth exceeds 3.50m; Stormwater Utilities - (ring 1500 mm internal dia.) MH depth 2.51 - 3.50m; Stormwater Utilities - (ring 1200 mm internal dia.) MH depth 1.51 - 2.50m [3.29]; Stormwater Utilities - (ring 1200 mm internal dia.) MH depth 2.51 - 3.50m [1.28]; Excavator [48 h]; Bucket [48 h]; Compactor [48 h]; Labor [100 h]; Eq. Operator [150 h]; Pipe Fitter [100 h]; Stormwater Utilities - (ring 1500 mm internal dia.) MH depth 1.51 - 2.50m [0.6] | 88,685 | 88,685 | A15560 | 1 | L01 -01 |
| CON-LEG101-LR-10910 |  | Backfilling of Inlet Manholes [Local – 01 Segment-01] | 6d | 2026-03-24 A | 2026-04-28 A | CON-LEG101-LR-4320 | 100% |  | 2026-05-10 | 2026-05-17 |  |  | Stormwater Utilities - (ring 1200 mm internal dia.) MH depth 1.51 - 2.50m [1.46]; Stormwater Utilities - (ring 1200 mm internal dia.) MH depth 2.51 - 3.50m [0.52]; Stormwater Utilities - (ring 1500 mm internal dia.) MH depth 1.51 - 2.50m [0.27]; Stormwater Utilities - (ring 1200 mm internal dia.) MH depth 3.51 - 4.50m; Stormwater Utilities - (ring 1200 mm internal dia.) MH depth exceeds 4.50m; Stormwater Utilities - (ring 1500 mm internal dia.) MH depth exceeds 3.50m; Stormwater Utilities - (ring 1500 mm internal dia.) MH depth 2.51 - 3.50m | 38,590 | 38,590 |  | 1 | L01 -01 |
| CON-LEG101-LR-10920 |  | Finishing and Testing of Inlet Manholes [Local – 01 Segment-01] | 15d | 2026-03-28 A | 2026-11-23 | CON-LEG101-LR-10910 | 90% | 1.5d | 2026-05-17 | 2026-06-08 | 77.5d | 0d | Stormwater Utilities - (ring 1200 mm internal dia.) MH depth 1.51 - 2.50m [0.73]; Stormwater Utilities - (ring 1200 mm internal dia.) MH depth 2.51 - 3.50m [0.29]; Stormwater Utilities - (ring 1500 mm internal dia.) MH depth 1.51 - 2.50m [0.13]; Stormwater Utilities - (ring 1200 mm internal dia.) MH depth 3.51 - 4.50m; Stormwater Utilities - (ring 1200 mm internal dia.) MH depth exceeds 4.50m; Stormwater Utilities - (ring 1500 mm internal dia.) MH depth exceeds 3.50m; Stormwater Utilities - (ring 1500 mm internal dia.) MH depth 2.51 - 3.50m | 19,720 | 17,748 |  | 0.5 | L01 -01 |
|  | 3 | **Concrete Chambers/Outfalls** |  | 2026-03-26 | 2026-11-24 |  |  |  |  |  |  |  |  |  |  |  |  |  |
| CON-LEG101-LR-10840 |  | Excavation of Concrete chambers [Local – 01 Segment-01] | 6d | 2026-03-26 A | 2026-04-09 A | CON-LEG101-LR-4200, CON-LEG101-LR-10910 | 100% |  | 2026-05-07 | 2026-05-13 |  |  | Single Catch basin as per drawings [1.69]; Double Catch basin as per drawings [0.28]; Curb inlet catch basin [1.05] | 28,200 | 28,200 |  | 1 | L01 -01 |
| CON-LEG101-LR-10850 |  | PC of Concrete chambers [Local – 01 Segment-01] | 2d | 2026-04-01 A | 2026-04-12 A | CON-LEG101-LR-10840 | 100% |  | 2026-05-23 | 2026-05-25 |  |  | Single Catch basin as per drawings [1.13]; Double Catch basin as per drawings [0.19]; Curb inlet catch basin [0.7] | 18,860 | 18,860 |  | 1 | L01 -01 |
| CON-LEG101-LR-10870 |  | Installation UPVC Pipes to Concrete chambers [Local – 01 Segment-01] | 8d | 2026-04-02 A | 2026-04-21 A | CON-LEG101-LR-4430, CON-LEG101-LR-10920 | 100% |  | 2026-06-13 | 2026-06-22 |  |  | Stormwater Utilities - PVC Pipes - 300 mm Diameter Depth: 0.00 m - 1.50 m. [105.02]; Stormwater Utilities - PVC Pipes - 300 mm Diameter Depth: 1.51m - 2.50m [153.87]; Stormwater Utilities - PVC Pipes - 500 mm Depth: 1.51m - 2.50m [47.54]; Stormwater Utilities - PVC Pipes - 300 mm Diameter Depth exceeds 2.50m; Stormwater Utilities - PVC Pipes - 400 mm Diameter Depth: 0.00 m - 1.50 m.; Stormwater Utilities - PVC Pipes - 500 mm Depth: 0.00 m - 1.50 m.; Stormwater Utilities - PVC Pipes - 400 mm Diameter Depth: 1.51m - 2.50m; Stormwater Utilities - PVC Pipes - 400 mm Diameter Depth exceeds 2.50m; Stormwater Utilities - PVC Pipes - 500 mm Depth exceeds 2.50m | 145,478.3 | 145,478.3 |  | 1 | L01 -01 |
| CON-LEG101-LR-4430 |  | Installation of Concrete chambers [Local – 01 Segment-01] | 12d | 2026-04-13 A | 2026-04-21 A | CON-LEG101-LR-10850, CON-LEG101-LR-3780, CON-LEG101-PR-1990 | 100% |  | 2026-05-18 | 2026-06-06 |  |  | Single Catch basin as per drawings [5.07]; Double Catch basin as per drawings [0.84]; Curb inlet catch basin [3.13]; Excavator [48 h]; Labor [100 h]; Skilled Labor [50 h]; Eq. Operator [50 h]; Pipe Fitter [50 h] | 84,320 | 84,320 | A15710 | 1 | L01 -01 |
| CON-LEG101-LR-10860 |  | Backfilling to Concrete chambers [Local – 01 Segment-01] | 6d | 2026-04-22 A | 2026-04-25 A | CON-LEG101-LR-10870, CON-LEG101-LR-4430 | 100% |  | 2026-06-13 | 2026-06-20 |  |  | Single Catch basin as per drawings [2.26]; Double Catch basin as per drawings [0.38]; Curb inlet catch basin [1.32] | 36,600 | 36,600 |  | 1 | L01 -01 |
| CON-LEG101-LR-10880 |  | FInishing and Testing of Concrete chambers [Local – 01 Segment-01] | 10d | 2026-07-01 A | 2026-11-24 | CON-LEG101-LR-10870, CON-LEG101-LR-4430, CON-LEG101-LR-10860 | 90% | 1d | 2026-08-06 | 2026-08-18 | 85.3d | 0d | Single Catch basin as per drawings [1.13]; Double Catch basin as per drawings [0.19]; Curb inlet catch basin [0.7] | 18,860 | 16,974 |  | 0.5 | L01 -01 |

| ID | WBS | Activity | Duration | Start | Finish | Predecessors | Complete | Remaining | Planned start | Planned finish | Total float | Free float | Resources | Cost | Actual cost | Mapping Sheet Activity ID | % A | JEDDAH 1 - Area Name |
| --- | --- | --- | --- | --- | --- | --- | --- | --- | --- | --- | --- | --- | --- | --- | --- | --- | --- | --- |
|  | 4 | **Sanitary Sewerage** |  | 2026-01-12 | 2026-11-22 |  |  |  |  |  |  |  |  |  |  |  |  |  |
|  | 2 | **Pipe Work** |  | 2026-01-12 | 2026-03-07 |  |  |  |  |  |  |  |  |  |  |  |  |  |
| CON-LEG101-LR-2780 |  | Excavation for Sanitary Sewerage Network [Local – 01 Segment-01] | 10d | 2026-01-12 A | 2026-01-24 A | CON-LEG101-LR-3580, CON-LEG101-EN-1750, CON-LEG101-EN-1760, CON-LEG101-EN-1770, CON-LEG101-EN-3440 | 100% |  | 2026-03-01 | 2026-03-12 |  |  | Sanitary Sewerage 450mm Depth: 3.51m - 4.50m; Sanitary Sewerage 450mm Depth exceeds 4.50m; Sanitary Sewerage 300mm Depth: 1.51m - 2.50m; Sanitary Sewerage 300mm Depth: 2.51m - 3.50m; Sanitary Sewerage 300mm Depth exceeds 3.50m; Sanitary Sewerage 350mm Depth: 0.00 m - 1.50 m.; Sanitary Sewerage 350mm Depth: 1.51m - 2.50m; Sanitary Sewerage 350mm Depth: 2.51m - 3.50m; Sanitary Sewerage 350mm Depth exceeds 3.50m; Sanitary Sewerage 450mm Depth: 0.00 m - 1.50 m.; Sanitary Sewerage 450mm Depth: 1.51m - 2.50m; Sanitary Sewerage 450mm Depth: 2.51m - 3.50m; Excavator [48 h]; Water Tanker [48 h]; Truck [96 h]; Crane [48 h]; Labor [400 h]; Driver [300 h]; Eq. Operator [200 h]; Sanitary Sewerage 150mm Diameter Depth: 0.00 m - 1.50 m. [1.34]; Sanitary Sewerage 150mm Diameter Depth: 1.51m - 2.50m [13.4]; Sanitary Sewerage 150mm Diameter Depth exceeds 2.50m [1.34]; Sanitary Sewerage 200mm Depth: 0.00 m - 1.50 m. [43.25]; Sanitary Sewerage 200mm Depth: 1.51m - 2.50m [73.23]; Sanitary Sewerage 200mm Depth: 2.51m - 3.50m [36.45]; Sanitary Sewerage 200mm Depth exceeds 3.50m [2.68]; Sanitary Sewerage 300mm Depth: 0.00 m - 1.50 m. [2.68] | 66,057 | 66,057 | A13210 | 1 | L01 -01 |
| CON-LEG101-LR-2870 |  | Granular bedding for Sanitary Sewerage Network [Local – 01 Segment-01] | 4d | 2026-01-13 A | 2026-01-24 A | CON-LEG101-LR-2780 | 100% |  | 2026-03-12 | 2026-03-17 |  |  | Sanitary Sewerage 450mm Depth: 3.51m - 4.50m; Sanitary Sewerage 450mm Depth exceeds 4.50m; Sanitary Sewerage 300mm Depth: 1.51m - 2.50m; Sanitary Sewerage 300mm Depth: 2.51m - 3.50m; Sanitary Sewerage 300mm Depth exceeds 3.50m; Sanitary Sewerage 350mm Depth: 0.00 m - 1.50 m.; Sanitary Sewerage 350mm Depth: 1.51m - 2.50m; Sanitary Sewerage 350mm Depth: 2.51m - 3.50m; Sanitary Sewerage 350mm Depth exceeds 3.50m; Sanitary Sewerage 450mm Depth: 0.00 m - 1.50 m.; Sanitary Sewerage 450mm Depth: 1.51m - 2.50m; Sanitary Sewerage 450mm Depth: 2.51m - 3.50m; Loader [48 h]; Truck [48 h]; Driver [100 h]; Eq. Operator [100 h]; Sanitary Sewerage 150mm Diameter Depth: 0.00 m - 1.50 m. [0.34]; Sanitary Sewerage 150mm Diameter Depth: 1.51m - 2.50m [3.35]; Sanitary Sewerage 150mm Diameter Depth exceeds 2.50m [0.34]; Sanitary Sewerage 200mm Depth: 0.00 m - 1.50 m. [10.81]; Sanitary Sewerage 200mm Depth: 1.51m - 2.50m [18.31]; Sanitary Sewerage 200mm Depth: 2.51m - 3.50m [9.11]; Sanitary Sewerage 200mm Depth exceeds 3.50m [0.67]; Sanitary Sewerage 300mm Depth: 0.00 m - 1.50 m. [0.67] | 16,518.7 | 16,518.7 | A13310 | 1 | L01 -01 |
| CON-LEG101-LR-2960 |  | Installation of Pipe for Sanitary Sewerage Network [Local – 01 Segment-01] | 10d | 2026-01-15 A | 2026-01-28 A | CON-LEG101-PR-2560, CON-LEG101-LR-2870, CON-LEG101-PR-1720 | 100% |  | 2026-03-12 | 2026-03-29 |  |  | Sanitary Sewerage 450mm Depth: 3.51m - 4.50m; Sanitary Sewerage 450mm Depth exceeds 4.50m; Sanitary Sewerage 300mm Depth: 1.51m - 2.50m; Sanitary Sewerage 300mm Depth: 2.51m - 3.50m; Sanitary Sewerage 300mm Depth exceeds 3.50m; Sanitary Sewerage 350mm Depth: 0.00 m - 1.50 m.; Sanitary Sewerage 350mm Depth: 1.51m - 2.50m; Sanitary Sewerage 350mm Depth: 2.51m - 3.50m; Sanitary Sewerage 350mm Depth exceeds 3.50m; Sanitary Sewerage 450mm Depth: 0.00 m - 1.50 m.; Sanitary Sewerage 450mm Depth: 1.51m - 2.50m; Sanitary Sewerage 450mm Depth: 2.51m - 3.50m; Excavator [48 h]; Crane [48 h]; Labor [150 h]; Skilled Labor [100 h]; Eq. Operator [100 h]; Plumber [50 h]; Pipe Fitter [50 h]; Sanitary Sewerage 150mm Diameter Depth: 0.00 m - 1.50 m. [3.02]; Sanitary Sewerage 150mm Diameter Depth: 1.51m - 2.50m [30.15]; Sanitary Sewerage 150mm Diameter Depth exceeds 2.50m [3.02]; Sanitary Sewerage 200mm Depth: 0.00 m - 1.50 m. [97.31]; Sanitary Sewerage 200mm Depth: 1.51m - 2.50m [164.77]; Sanitary Sewerage 200mm Depth: 2.51m - 3.50m [82.01]; Sanitary Sewerage 200mm Depth exceeds 3.50m [6.03]; Sanitary Sewerage 300mm Depth: 0.00 m - 1.50 m. [6.03] | 148,632.7 | 148,632.7 | A13410 | 1 | L01 -01 |
| CON-LEG101-LR-3230 |  | Granular Surround for Sanitary Sewerage Network [Local – 01 Segment-01] | 4d | 2026-01-18 A | 2026-01-29 A | CON-LEG101-LR-3140, CON-LEG101-EN-3450 | 100% |  | 2026-04-01 | 2026-04-06 |  |  | Sanitary Sewerage 450mm Depth: 3.51m - 4.50m; Sanitary Sewerage 450mm Depth exceeds 4.50m; Sanitary Sewerage 300mm Depth: 1.51m - 2.50m; Sanitary Sewerage 300mm Depth: 2.51m - 3.50m; Sanitary Sewerage 300mm Depth exceeds 3.50m; Sanitary Sewerage 350mm Depth: 0.00 m - 1.50 m.; Sanitary Sewerage 350mm Depth: 1.51m - 2.50m; Sanitary Sewerage 350mm Depth: 2.51m - 3.50m; Sanitary Sewerage 350mm Depth exceeds 3.50m; Sanitary Sewerage 450mm Depth: 0.00 m - 1.50 m.; Sanitary Sewerage 450mm Depth: 1.51m - 2.50m; Sanitary Sewerage 450mm Depth: 2.51m - 3.50m; Loader [48 h]; Truck [48 h]; Driver [50 h]; Eq. Operator [50 h]; Sanitary Sewerage 150mm Diameter Depth: 0.00 m - 1.50 m. [0.34]; Sanitary Sewerage 150mm Diameter Depth: 1.51m - 2.50m [3.35]; Sanitary Sewerage 150mm Diameter Depth exceeds 2.50m [0.34]; Sanitary Sewerage 200mm Depth: 0.00 m - 1.50 m. [10.81]; Sanitary Sewerage 200mm Depth: 1.51m - 2.50m [18.31]; Sanitary Sewerage 200mm Depth: 2.51m - 3.50m [9.11]; Sanitary Sewerage 200mm Depth exceeds 3.50m [0.67]; Sanitary Sewerage 300mm Depth: 0.00 m - 1.50 m. [0.67] | 16,518.7 | 16,518.7 | A13740 | 1 | L01 -01 |
| CON-LEG101-LR-3140 |  | Concrete encasement, pipe dia 200 and 350 mm [Local – 01 Segment-01] | 3d | 2026-02-01 A | 2026-02-02 A | CON-LEG101-LR-3050, CON-LEG101-EN-3450, CON-LEG101-PR-1430 | 100% |  | 2026-04-01 | 2026-04-05 |  |  | Sanitary Sewerage Concrete encasement pipe dia 350 mm; Sanitary Sewerage - Concrete encasement pipe dia 200 mm [33.64]; Labor [200 h]; Carpenter [50 h]; Mason [100 h] | 7,400.8 | 7,400.8 | A13650 | 1 | L01 -01 |
| CON-LEG101-LR-3050 |  | Testing for Sanitary Sewerage Network [Local – 01 Segment-01] | 4d | 2026-03-01 A | 2026-03-03 A | CON-LEG101-LR-2960 | 100% |  | 2026-04-16 | 2026-04-21 |  |  | Sanitary Sewerage 450mm Depth: 3.51m - 4.50m; Sanitary Sewerage 450mm Depth exceeds 4.50m; Sanitary Sewerage 300mm Depth: 1.51m - 2.50m; Sanitary Sewerage 300mm Depth: 2.51m - 3.50m; Sanitary Sewerage 300mm Depth exceeds 3.50m; Sanitary Sewerage 350mm Depth: 0.00 m - 1.50 m.; Sanitary Sewerage 350mm Depth: 1.51m - 2.50m; Sanitary Sewerage 350mm Depth: 2.51m - 3.50m; Sanitary Sewerage 350mm Depth exceeds 3.50m; Sanitary Sewerage 450mm Depth: 0.00 m - 1.50 m.; Sanitary Sewerage 450mm Depth: 1.51m - 2.50m; Sanitary Sewerage 450mm Depth: 2.51m - 3.50m; Labor [200 h]; Skilled Labor [100 h]; Pipe Fitter [100 h]; Sanitary Sewerage 150mm Diameter Depth: 0.00 m - 1.50 m. [0.67]; Sanitary Sewerage 150mm Diameter Depth: 1.51m - 2.50m [6.7]; Sanitary Sewerage 150mm Diameter Depth exceeds 2.50m [0.67]; Sanitary Sewerage 200mm Depth: 0.00 m - 1.50 m. [21.63]; Sanitary Sewerage 200mm Depth: 1.51m - 2.50m [36.62]; Sanitary Sewerage 200mm Depth: 2.51m - 3.50m [18.22]; Sanitary Sewerage 200mm Depth exceeds 3.50m [1.34]; Sanitary Sewerage 300mm Depth: 0.00 m - 1.50 m. [1.34] | 33,029.6 | 33,029.6 | A13510 | 1 | L01 -01 |
| CON-LEG101-LR-3320 |  | Installation of Micron Marker Magnetic Tape [Local – 01 Segment-01] | 2d | 2026-03-04 A | 2026-03-05 A | CON-LEG101-LR-3230 | 100% |  | 2026-04-21 | 2026-04-23 |  |  | Sanitary Sewerage 450mm Depth: 3.51m - 4.50m; Sanitary Sewerage 450mm Depth exceeds 4.50m; Sanitary Sewerage 300mm Depth: 1.51m - 2.50m; Sanitary Sewerage 300mm Depth: 2.51m - 3.50m; Sanitary Sewerage 300mm Depth exceeds 3.50m; Sanitary Sewerage 350mm Depth: 0.00 m - 1.50 m.; Sanitary Sewerage 350mm Depth: 1.51m - 2.50m; Sanitary Sewerage 350mm Depth: 2.51m - 3.50m; Sanitary Sewerage 350mm Depth exceeds 3.50m; Sanitary Sewerage 450mm Depth: 0.00 m - 1.50 m.; Sanitary Sewerage 450mm Depth: 1.51m - 2.50m; Sanitary Sewerage 450mm Depth: 2.51m - 3.50m; Labor [150 h]; Sanitary Sewerage 150mm Diameter Depth: 0.00 m - 1.50 m. [0.34]; Sanitary Sewerage 150mm Diameter Depth: 1.51m - 2.50m [3.35]; Sanitary Sewerage 150mm Diameter Depth exceeds 2.50m [0.34]; Sanitary Sewerage 200mm Depth: 0.00 m - 1.50 m. [10.81]; Sanitary Sewerage 200mm Depth: 1.51m - 2.50m [18.31]; Sanitary Sewerage 200mm Depth: 2.51m - 3.50m [9.11]; Sanitary Sewerage 200mm Depth exceeds 3.50m [0.67]; Sanitary Sewerage 300mm Depth: 0.00 m - 1.50 m. [0.67] | 16,518.7 | 16,518.7 | A13840 | 1 | L01 -01 |
| CON-LEG101-LR-3410 |  | Backfilling to Subgrade Elevation [Local – 01 Segment-01] | 8d | 2026-03-04 A | 2026-03-07 A | CON-LEG101-LR-3320, CON-LEG101-EN-3440 | 100% |  | 2026-04-23 | 2026-05-03 |  |  | Sanitary Sewerage 450mm Depth: 3.51m - 4.50m; Sanitary Sewerage 450mm Depth exceeds 4.50m; Sanitary Sewerage 300mm Depth: 1.51m - 2.50m; Sanitary Sewerage 300mm Depth: 2.51m - 3.50m; Sanitary Sewerage 300mm Depth exceeds 3.50m; Sanitary Sewerage 350mm Depth: 0.00 m - 1.50 m.; Sanitary Sewerage 350mm Depth: 1.51m - 2.50m; Sanitary Sewerage 350mm Depth: 2.51m - 3.50m; Sanitary Sewerage 350mm Depth exceeds 3.50m; Sanitary Sewerage 450mm Depth: 0.00 m - 1.50 m.; Sanitary Sewerage 450mm Depth: 1.51m - 2.50m; Sanitary Sewerage 450mm Depth: 2.51m - 3.50m; Excavator [48 h]; Water Tanker [48 h]; Road Roller [48 h]; Bucket [48 h]; Compactor [48 h]; Labor [150 h]; Driver [75 h]; Eq. Operator [300 h]; Sanitary Sewerage 150mm Diameter Depth: 0.00 m - 1.50 m. [0.67]; Sanitary Sewerage 150mm Diameter Depth: 1.51m - 2.50m [6.7]; Sanitary Sewerage 150mm Diameter Depth exceeds 2.50m [0.67]; Sanitary Sewerage 200mm Depth: 0.00 m - 1.50 m. [21.63]; Sanitary Sewerage 200mm Depth: 1.51m - 2.50m [36.62]; Sanitary Sewerage 200mm Depth: 2.51m - 3.50m [18.22]; Sanitary Sewerage 200mm Depth exceeds 3.50m [1.34]; Sanitary Sewerage 300mm Depth: 0.00 m - 1.50 m. [1.34] | 33,029.6 | 33,029.6 | A13940 | 1 | L01 -01 |
|  | 1 | **Manhole** |  | 2026-01-13 | 2026-11-22 |  |  |  |  |  |  |  |  |  |  |  |  |  |
| CON-LEG101-LR-3500 |  | Installation of Fiberglass Manholes [Local – 01 Segment-01] | 20d | 2026-01-13 A | 2026-11-22 | CON-LEG101-PR-2570, CON-LEG101-LR-2960, CON-LEG101-PR-1750 | 95% | 1d | 2026-04-16 | 2026-05-09 | 27d | 60.55d | Sanitary Sewerage MH depth 1.51 - 2.50 m with back drop; Sanitary Sewerage MH depth 2.51 - 3.50 m with back drop; Sanitary Sewerage MH depth 3.51 - 4.50 m; Sanitary Sewerage MH depth exceeds 3.50 m with back drop; Sanitary Sewerage MH depth exceeds 4.50 m; Sanitary Sewerage MH depth 0.00 m - 1.50 m. [6.7]; Sanitary Sewerage MH depth 1.51 - 2.50 m [7.37]; Sanitary Sewerage MH depth 2.51 - 3.50 m [16.75]; Excavator [48 h]; Bucket [48 h]; Compactor [48 h]; Labor [100 h]; Eq. Operator [150 h]; Pipe Fitter [100 h] | 533,990 | 507,290.5 | A14150 | 0.93 | L01 -01 |
|  | 2 | **LOCAL - 01 Segment-02 (From 1+066 to 2+133)** |  | 2026-01-21 | 2026-11-24 |  |  |  |  |  |  |  |  |  |  |  |  |  |
|  | 1 | **Stormwater Utilities** |  | 2026-01-21 | 2026-11-24 |  |  |  |  |  |  |  |  |  |  |  |  |  |
|  | 2 | **Pipe Work** |  | 2026-01-21 | 2026-05-14 |  |  |  |  |  |  |  |  |  |  |  |  |  |
| CON-LEG101-LR-3590 |  | Excavation for Stormwater Utilities Network [Local – 01 Segment-02] | 10d | 2026-01-21 A | 2026-02-10 A | CON-LEG101-LR-4170, CON-LEG101-LR-4640, CON-LEG101-SD-1000, CON-LEG101-LR-1450, CON-LEG101-EN-1780, CON-LEG101-EN-1790, CON-LEG101-EN-1800, CON-LEG101-EN-3440 | 100% |  | 2026-02-17 | 2026-03-01 |  |  | Stormwater Utilities - GRP Pipes - 400 mm Diameter Depth: 0.00 m - 1.50 m.; Stormwater Utilities - GRP Pipes - 400 mm Depth: 1.51m - 2.50m; Stormwater Utilities - GRP Pipes - 400 mm Depth exceeds 2.50m; Stormwater Utilities - GRP Pipes - 500 mm Depth: 0.00 m - 1.50 m.; Stormwater Utilities - GRP Pipes - 600 mm Depth: 1.51m - 2.50m; Stormwater Utilities - GRP Pipes - 600 mm Depth: 2.51m - 3.50m; Stormwater Utilities - GRP Pipes - 600 mm Depth: 3.51m - 4.50m; Excavator [48 h]; Water Tanker [48 h]; Truck [96 h]; Crane [48 h]; Labor [400 h]; Driver [300 h]; Eq. Operator [200 h]; Stormwater Utilities - GRP Pipes - 500 mm Depth: 1.51m - 2.50m [18.4]; Stormwater Utilities - GRP Pipes - 500 mm Depth: 2.51m - 3.50m [7.71]; Stormwater Utilities - GRP Pipes - 500 mm Depth: 3.51m - 4.50m [24.52]; Stormwater Utilities - GRP Pipes - 500 mm Depth exceeds 4.50m [2.68]; Stormwater Utilities - GRP Pipes - 600 mm Depth exceeds 4.50m [2.68]; Stormwater Utilities - GRP Pipes - 700 mm Depth: 1.51m - 2.50m [2.68]; Stormwater Utilities - GRP Pipes - 700 mm Depth: 2.51m - 3.50m [9.65]; Stormwater Utilities - GRP Pipes - 700 mm Depth exceeds 3.50m [2.68]; Stormwater Utilities - GRP Pipes - 800 mm Depth: 1.51m - 2.50m [5.76]; Stormwater Utilities - GRP Pipes - 800 mm Depth: 2.51m - 3.50m [26.53]; Stormwater Utilities - GRP Pipes - 800 mm Depth exceeds 3.50m [2.68] | 124,847 | 124,847 | A14680 | 1 | L01 -02 |
| CON-LEG101-LR-3690 |  | Granular bedding for Stormwater Utilities Network [Local – 01 Segment-02] | 4d | 2026-01-24 A | 2026-02-12 A | CON-LEG101-LR-3590 | 100% |  | 2026-03-01 | 2026-03-04 |  |  | Stormwater Utilities - GRP Pipes - 400 mm Diameter Depth: 0.00 m - 1.50 m.; Stormwater Utilities - GRP Pipes - 400 mm Depth: 1.51m - 2.50m; Stormwater Utilities - GRP Pipes - 400 mm Depth exceeds 2.50m; Stormwater Utilities - GRP Pipes - 500 mm Depth: 0.00 m - 1.50 m.; Stormwater Utilities - GRP Pipes - 600 mm Depth: 1.51m - 2.50m; Stormwater Utilities - GRP Pipes - 600 mm Depth: 2.51m - 3.50m; Stormwater Utilities - GRP Pipes - 600 mm Depth: 3.51m - 4.50m; Loader [48 h]; Truck [48 h]; Driver [50 h]; Eq. Operator [50 h]; Stormwater Utilities - GRP Pipes - 500 mm Depth: 1.51m - 2.50m [4.62]; Stormwater Utilities - GRP Pipes - 500 mm Depth: 2.51m - 3.50m [1.93]; Stormwater Utilities - GRP Pipes - 500 mm Depth: 3.51m - 4.50m [6.14]; Stormwater Utilities - GRP Pipes - 500 mm Depth exceeds 4.50m [0.67]; Stormwater Utilities - GRP Pipes - 600 mm Depth exceeds 4.50m [0.67]; Stormwater Utilities - GRP Pipes - 700 mm Depth: 1.51m - 2.50m [0.67]; Stormwater Utilities - GRP Pipes - 700 mm Depth: 2.51m - 3.50m [2.42]; Stormwater Utilities - GRP Pipes - 700 mm Depth exceeds 3.50m [0.67]; Stormwater Utilities - GRP Pipes - 800 mm Depth: 1.51m - 2.50m [1.44]; Stormwater Utilities - GRP Pipes - 800 mm Depth: 2.51m - 3.50m [6.63]; Stormwater Utilities - GRP Pipes - 800 mm Depth exceeds 3.50m [0.67] | 31,243 | 31,243 | A14790 | 1 | L01 -02 |
| CON-LEG101-LR-3790 |  | Installation of Pipe for Stormwater Utilities Network [Local – 01 Segment-02] | 8d | 2026-01-28 A | 2026-04-09 A | CON-LEG101-PR-2100, CON-LEG101-PR-2110, CON-LEG101-LR-3690, CON-LEG101-PR-1780, CON-LEG101-PR-1810 | 100% |  | 2026-06-13 | 2026-06-21 |  |  | Stormwater Utilities - GRP Pipes - 400 mm Diameter Depth: 0.00 m - 1.50 m.; Stormwater Utilities - GRP Pipes - 400 mm Depth: 1.51m - 2.50m; Stormwater Utilities - GRP Pipes - 400 mm Depth exceeds 2.50m; Stormwater Utilities - GRP Pipes - 500 mm Depth: 0.00 m - 1.50 m.; Stormwater Utilities - GRP Pipes - 600 mm Depth: 1.51m - 2.50m; Stormwater Utilities - GRP Pipes - 600 mm Depth: 2.51m - 3.50m; Stormwater Utilities - GRP Pipes - 600 mm Depth: 3.51m - 4.50m; Excavator [48 h]; Crane [48 h]; Labor [150 h]; Skilled Labor [100 h]; Eq. Operator [100 h]; Plumber [50 h]; Pipe Fitter [50 h]; Stormwater Utilities - GRP Pipes - 500 mm Depth: 1.51m - 2.50m [41.53]; Stormwater Utilities - GRP Pipes - 500 mm Depth: 2.51m - 3.50m [17.34]; Stormwater Utilities - GRP Pipes - 500 mm Depth: 3.51m - 4.50m [55.17]; Stormwater Utilities - GRP Pipes - 500 mm Depth exceeds 4.50m [6.03]; Stormwater Utilities - GRP Pipes - 600 mm Depth exceeds 4.50m [6.03]; Stormwater Utilities - GRP Pipes - 700 mm Depth: 1.51m - 2.50m [6.03]; Stormwater Utilities - GRP Pipes - 700 mm Depth: 2.51m - 3.50m [21.71]; Stormwater Utilities - GRP Pipes - 700 mm Depth exceeds 3.50m [6.03]; Stormwater Utilities - GRP Pipes - 800 mm Depth: 1.51m - 2.50m [12.97]; Stormwater Utilities - GRP Pipes - 800 mm Depth: 2.51m - 3.50m [59.7]; Stormwater Utilities - GRP Pipes - 800 mm Depth exceeds 3.50m [6.03] | 281,005 | 281,005 | A14900 | 1 | L01 -02 |
| CON-LEG101-LR-3990 |  | Granular Surround for Stormwater Utilities Network [Local – 01 Segment-02] | 4d | 2026-01-29 A | 2026-04-11 A | CON-LEG101-LR-3890, CON-LEG101-EN-3450 | 100% |  | 2026-06-27 | 2026-07-01 |  |  | Stormwater Utilities - GRP Pipes - 400 mm Diameter Depth: 0.00 m - 1.50 m.; Stormwater Utilities - GRP Pipes - 400 mm Depth: 1.51m - 2.50m; Stormwater Utilities - GRP Pipes - 400 mm Depth exceeds 2.50m; Stormwater Utilities - GRP Pipes - 500 mm Depth: 0.00 m - 1.50 m.; Stormwater Utilities - GRP Pipes - 600 mm Depth: 1.51m - 2.50m; Stormwater Utilities - GRP Pipes - 600 mm Depth: 2.51m - 3.50m; Stormwater Utilities - GRP Pipes - 600 mm Depth: 3.51m - 4.50m; Loader [48 h]; Truck [48 h]; Driver [75 h]; Eq. Operator [75 h]; Stormwater Utilities - GRP Pipes - 500 mm Depth: 1.51m - 2.50m [4.62]; Stormwater Utilities - GRP Pipes - 500 mm Depth: 2.51m - 3.50m [1.93]; Stormwater Utilities - GRP Pipes - 500 mm Depth: 3.51m - 4.50m [6.13]; Stormwater Utilities - GRP Pipes - 500 mm Depth exceeds 4.50m [0.67]; Stormwater Utilities - GRP Pipes - 600 mm Depth exceeds 4.50m [0.67]; Stormwater Utilities - GRP Pipes - 700 mm Depth: 1.51m - 2.50m [0.67]; Stormwater Utilities - GRP Pipes - 700 mm Depth: 2.51m - 3.50m [2.41]; Stormwater Utilities - GRP Pipes - 700 mm Depth exceeds 3.50m [0.67]; Stormwater Utilities - GRP Pipes - 800 mm Depth: 1.51m - 2.50m [1.44]; Stormwater Utilities - GRP Pipes - 800 mm Depth: 2.51m - 3.50m [6.63]; Stormwater Utilities - GRP Pipes - 800 mm Depth exceeds 3.50m [0.67] | 31,220 | 31,220 | A15120 | 1 | L01 -02 |
| CON-LEG101-LR-3890 |  | Testing for Stormwater Utilities Network [Local – 01 Segment-02] | 4d | 2026-03-01 A | 2026-05-12 A | CON-LEG101-LR-3790 | 100% |  | 2026-04-11 | 2026-04-15 |  |  | Stormwater Utilities - GRP Pipes - 400 mm Diameter Depth: 0.00 m - 1.50 m.; Stormwater Utilities - GRP Pipes - 400 mm Depth: 1.51m - 2.50m; Stormwater Utilities - GRP Pipes - 400 mm Depth exceeds 2.50m; Stormwater Utilities - GRP Pipes - 500 mm Depth: 0.00 m - 1.50 m.; Stormwater Utilities - GRP Pipes - 600 mm Depth: 1.51m - 2.50m; Stormwater Utilities - GRP Pipes - 600 mm Depth: 2.51m - 3.50m; Stormwater Utilities - GRP Pipes - 600 mm Depth: 3.51m - 4.50m; Labor [200 h]; Skilled Labor [100 h]; Pipe Fitter [100 h]; Stormwater Utilities - GRP Pipes - 500 mm Depth: 1.51m - 2.50m [9.23]; Stormwater Utilities - GRP Pipes - 500 mm Depth: 2.51m - 3.50m [3.85]; Stormwater Utilities - GRP Pipes - 500 mm Depth: 3.51m - 4.50m [12.26]; Stormwater Utilities - GRP Pipes - 500 mm Depth exceeds 4.50m [1.34]; Stormwater Utilities - GRP Pipes - 600 mm Depth exceeds 4.50m [1.34]; Stormwater Utilities - GRP Pipes - 700 mm Depth: 1.51m - 2.50m [1.34]; Stormwater Utilities - GRP Pipes - 700 mm Depth: 2.51m - 3.50m [4.82]; Stormwater Utilities - GRP Pipes - 700 mm Depth exceeds 3.50m [1.34]; Stormwater Utilities - GRP Pipes - 800 mm Depth: 1.51m - 2.50m [2.88]; Stormwater Utilities - GRP Pipes - 800 mm Depth: 2.51m - 3.50m [13.27]; Stormwater Utilities - GRP Pipes - 800 mm Depth exceeds 3.50m [1.34] | 62,440.5 | 62,440.5 | A15010 | 1 | L01 -02 |
| CON-LEG101-LR-4100 |  | Installation of Micron Marker Magnetic Tape [Local – 01 Segment-02] | 2d | 2026-03-11 A | 2026-05-13 A | CON-LEG101-LR-3990 | 100% |  | 2026-04-21 | 2026-04-23 |  |  | Stormwater Utilities - GRP Pipes - 400 mm Diameter Depth: 0.00 m - 1.50 m.; Stormwater Utilities - GRP Pipes - 400 mm Depth: 1.51m - 2.50m; Stormwater Utilities - GRP Pipes - 400 mm Depth exceeds 2.50m; Stormwater Utilities - GRP Pipes - 500 mm Depth: 0.00 m - 1.50 m.; Stormwater Utilities - GRP Pipes - 600 mm Depth: 1.51m - 2.50m; Stormwater Utilities - GRP Pipes - 600 mm Depth: 2.51m - 3.50m; Stormwater Utilities - GRP Pipes - 600 mm Depth: 3.51m - 4.50m; Labor [150 h]; Stormwater Utilities - GRP Pipes - 500 mm Depth: 1.51m - 2.50m [4.62]; Stormwater Utilities - GRP Pipes - 500 mm Depth: 2.51m - 3.50m [1.93]; Stormwater Utilities - GRP Pipes - 500 mm Depth: 3.51m - 4.50m [6.13]; Stormwater Utilities - GRP Pipes - 500 mm Depth exceeds 4.50m [0.67]; Stormwater Utilities - GRP Pipes - 600 mm Depth exceeds 4.50m [0.67]; Stormwater Utilities - GRP Pipes - 700 mm Depth: 1.51m - 2.50m [0.67]; Stormwater Utilities - GRP Pipes - 700 mm Depth: 2.51m - 3.50m [2.41]; Stormwater Utilities - GRP Pipes - 700 mm Depth exceeds 3.50m [0.67]; Stormwater Utilities - GRP Pipes - 800 mm Depth: 1.51m - 2.50m [1.44]; Stormwater Utilities - GRP Pipes - 800 mm Depth: 2.51m - 3.50m [6.63]; Stormwater Utilities - GRP Pipes - 800 mm Depth exceeds 3.50m [0.67] | 31,220 | 31,220 | A15230 | 1 | L01 -02 |
| CON-LEG101-LR-4210 |  | Backfilling to Subgrade Elevation [Local – 01 Segment-02] | 6d | 2026-03-12 A | 2026-05-14 A | CON-LEG101-LR-4100, CON-LEG101-EN-3440 | 100% |  | 2026-04-23 | 2026-04-30 |  |  | Stormwater Utilities - GRP Pipes - 400 mm Diameter Depth: 0.00 m - 1.50 m.; Stormwater Utilities - GRP Pipes - 400 mm Depth: 1.51m - 2.50m; Stormwater Utilities - GRP Pipes - 400 mm Depth exceeds 2.50m; Stormwater Utilities - GRP Pipes - 500 mm Depth: 0.00 m - 1.50 m.; Stormwater Utilities - GRP Pipes - 600 mm Depth: 1.51m - 2.50m; Stormwater Utilities - GRP Pipes - 600 mm Depth: 2.51m - 3.50m; Stormwater Utilities - GRP Pipes - 600 mm Depth: 3.51m - 4.50m; Excavator [48 h]; Water Tanker [48 h]; Road Roller [48 h]; Bucket [48 h]; Compactor [48 h]; Labor [150 h]; Driver [75 h]; Eq. Operator [300 h]; Stormwater Utilities - GRP Pipes - 500 mm Depth: 1.51m - 2.50m [9.23]; Stormwater Utilities - GRP Pipes - 500 mm Depth: 2.51m - 3.50m [3.85]; Stormwater Utilities - GRP Pipes - 500 mm Depth: 3.51m - 4.50m [12.26]; Stormwater Utilities - GRP Pipes - 500 mm Depth exceeds 4.50m [1.34]; Stormwater Utilities - GRP Pipes - 600 mm Depth exceeds 4.50m [1.34]; Stormwater Utilities - GRP Pipes - 700 mm Depth: 1.51m - 2.50m [1.34]; Stormwater Utilities - GRP Pipes - 700 mm Depth: 2.51m - 3.50m [4.82]; Stormwater Utilities - GRP Pipes - 700 mm Depth exceeds 3.50m [1.34]; Stormwater Utilities - GRP Pipes - 800 mm Depth: 1.51m - 2.50m [2.88]; Stormwater Utilities - GRP Pipes - 800 mm Depth: 2.51m - 3.50m [13.27]; Stormwater Utilities - GRP Pipes - 800 mm Depth exceeds 3.50m [1.34] | 62,440.5 | 62,440.5 | A15340 | 1 | L01 -02 |
|  | 1 | **Manhole** |  | 2026-01-21 | 2026-08-24 |  |  |  |  |  |  |  |  |  |  |  |  |  |
| CON-LEG101-LR-10930 |  | Excavation of Inlet Manholes [Local – 01 Segment-02] | 6d | 2026-01-21 A | 2026-03-10 A | CON-LEG101-LR-3590 | 100% |  | 2026-03-02 | 2026-03-08 |  |  | Stormwater Utilities - (ring 1200 mm internal dia.) MH depth 1.51 - 2.50m [0.91]; Stormwater Utilities - (ring 1200 mm internal dia.) MH depth 2.51 - 3.50m [1.2]; Stormwater Utilities - (ring 1200 mm internal dia.) MH depth 3.51 - 4.50m [0.6]; Stormwater Utilities - (ring 1200 mm internal dia.) MH depth exceeds 4.50m [0.1]; Stormwater Utilities - (ring 1500 mm internal dia.) MH depth exceeds 3.50m; Stormwater Utilities - (ring 1500 mm internal dia.) MH depth 1.51 - 2.50m; Stormwater Utilities - (ring 1500 mm internal dia.) MH depth 2.51 - 3.50m | 56,015 | 56,015 |  | 1 | L01 -02 |
| CON-LEG101-LR-10940 |  | PC of Inlet Manholes [Local – 01 Segment-02] | 3d | 2026-02-11 A | 2026-03-25 A | CON-LEG101-LR-10930 | 100% |  | 2026-03-15 | 2026-03-18 |  |  | Stormwater Utilities - (ring 1200 mm internal dia.) MH depth 1.51 - 2.50m [0.6]; Stormwater Utilities - (ring 1200 mm internal dia.) MH depth 2.51 - 3.50m [0.8]; Stormwater Utilities - (ring 1200 mm internal dia.) MH depth 3.51 - 4.50m [0.4]; Stormwater Utilities - (ring 1200 mm internal dia.) MH depth exceeds 4.50m [0.07]; Stormwater Utilities - (ring 1500 mm internal dia.) MH depth exceeds 3.50m; Stormwater Utilities - (ring 1500 mm internal dia.) MH depth 1.51 - 2.50m; Stormwater Utilities - (ring 1500 mm internal dia.) MH depth 2.51 - 3.50m | 37,400 | 37,400 |  | 1 | L01 -02 |
| CON-LEG101-LR-4330 |  | Installation of Inlet Manholes [Local – 01 Segment-02] | 10d | 2026-02-15 A | 2026-04-30 A | CON-LEG101-LR-10940, CON-LEG101-LR-3790, CON-LEG101-PR-1980 | 100% |  | 2026-04-11 | 2026-04-22 |  |  | Stormwater Utilities - (ring 1500 mm internal dia.) MH depth exceeds 3.50m; Stormwater Utilities - (ring 1500 mm internal dia.) MH depth 1.51 - 2.50m; Stormwater Utilities - (ring 1500 mm internal dia.) MH depth 2.51 - 3.50m; Stormwater Utilities - (ring 1200 mm internal dia.) MH depth 1.51 - 2.50m [2.73]; Stormwater Utilities - (ring 1200 mm internal dia.) MH depth 2.51 - 3.50m [3.59]; Stormwater Utilities - (ring 1200 mm internal dia.) MH depth 3.51 - 4.50m [1.82]; Stormwater Utilities - (ring 1200 mm internal dia.) MH depth exceeds 4.50m [0.3]; Excavator [48 h]; Bucket [48 h]; Compactor [48 h]; Labor [100 h]; Eq. Operator [150 h]; Pipe Fitter [100 h] | 168,370 | 168,370 | A15570 | 1 | L01 -02 |
| CON-LEG101-LR-10960 |  | Backfilling of Inlet Manholes [Local – 01 Segment-02] | 6d | 2026-03-26 A | 2026-04-27 A | CON-LEG101-LR-4330 | 100% |  | 2026-05-11 | 2026-05-18 |  |  | Stormwater Utilities - (ring 1200 mm internal dia.) MH depth 1.51 - 2.50m [1.21]; Stormwater Utilities - (ring 1200 mm internal dia.) MH depth 2.51 - 3.50m [1.59]; Stormwater Utilities - (ring 1200 mm internal dia.) MH depth 3.51 - 4.50m [0.8]; Stormwater Utilities - (ring 1200 mm internal dia.) MH depth exceeds 4.50m [0.13]; Stormwater Utilities - (ring 1500 mm internal dia.) MH depth exceeds 3.50m; Stormwater Utilities - (ring 1500 mm internal dia.) MH depth 1.51 - 2.50m; Stormwater Utilities - (ring 1500 mm internal dia.) MH depth 2.51 - 3.50m | 74,290 | 74,290 |  | 1 | L01 -02 |
| CON-LEG101-LR-10970 |  | Finishing and Testing of Inlet Manholes [Local – 01 Segment-02] | 12d | 2026-03-28 A | 2026-08-24 A | CON-LEG101-LR-10960 | 100% |  | 2026-05-18 | 2026-06-06 |  |  | Stormwater Utilities - (ring 1200 mm internal dia.) MH depth 1.51 - 2.50m [0.6]; Stormwater Utilities - (ring 1200 mm internal dia.) MH depth 2.51 - 3.50m [0.8]; Stormwater Utilities - (ring 1200 mm internal dia.) MH depth 3.51 - 4.50m [0.4]; Stormwater Utilities - (ring 1200 mm internal dia.) MH depth exceeds 4.50m [0.07]; Stormwater Utilities - (ring 1500 mm internal dia.) MH depth exceeds 3.50m; Stormwater Utilities - (ring 1500 mm internal dia.) MH depth 1.51 - 2.50m; Stormwater Utilities - (ring 1500 mm internal dia.) MH depth 2.51 - 3.50m | 37,400 | 37,400 |  | 1 | L01 -02 |

| ID | WBS | Activity | Duration | Start | Finish | Predecessors | Complete | Remaining | Planned start | Planned finish | Total float | Free float | Resources | Cost | Actual cost | % A | JEDDAH 1 - Area Name | Mapping Sheet Activity ID |
| --- | --- | --- | --- | --- | --- | --- | --- | --- | --- | --- | --- | --- | --- | --- | --- | --- | --- | --- |
|  | 3 | **Concrete Chambers/Outfalls** |  | 2026-04-14 | 2026-11-24 |  |  |  |  |  |  |  |  |  |  |  |  |  |
| CON-LEG101-LR-10980 |  | Excavation of Concrete chambers [Local – 01 Segment-02] | 10d | 2026-04-14 A | 2026-04-29 A | CON-LEG101-LR-10960, CON-LEG101-LR-4210 | 100% |  | 2026-05-11 | 2026-05-23 |  |  | Single Catch basin as per drawings [1.69]; Double Catch basin as per drawings [0.28]; Curb inlet catch basin [1.05] | 28,200 | 28,200 | 1 | L01 -02 |  |
| CON-LEG101-LR-10990 |  | PC of Concrete chambers [Local – 01 Segment-02] | 2d | 2026-04-20 A | 2026-04-30 A | CON-LEG101-LR-10980 | 100% |  | 2026-06-03 | 2026-06-04 |  |  | Single Catch basin as per drawings [1.13]; Double Catch basin as per drawings [0.19]; Curb inlet catch basin [0.7] | 18,860 | 18,860 | 1 | L01 -02 |  |
| CON-LEG101-LR-11010 |  | Installation UPVC Pipes to Concrete chambers [Local – 01 Segment-02] | 8d | 2026-04-21 A | 2026-05-05 A | CON-LEG101-LR-10980, CON-LEG101-LR-4440 | 100% |  | 2026-06-23 | 2026-07-01 |  |  | Stormwater Utilities - PVC Pipes - 300 mm Diameter Depth: 0.00 m - 1.50 m. [105.02]; Stormwater Utilities - PVC Pipes - 300 mm Diameter Depth: 1.51m - 2.50m [153.87]; Stormwater Utilities - PVC Pipes - 300 mm Diameter Depth exceeds 2.50m [13.4]; Stormwater Utilities - PVC Pipes - 500 mm Depth: 1.51m - 2.50m [47.54]; Stormwater Utilities - PVC Pipes - 500 mm Depth exceeds 2.50m [13.4]; Stormwater Utilities - PVC Pipes - 400 mm Diameter Depth: 0.00 m - 1.50 m.; Stormwater Utilities - PVC Pipes - 500 mm Depth: 0.00 m - 1.50 m.; Stormwater Utilities - PVC Pipes - 400 mm Diameter Depth: 1.51m - 2.50m; Stormwater Utilities - PVC Pipes - 400 mm Diameter Depth exceeds 2.50m | 174,958.3 | 174,958.3 | 1 | L01 -02 |  |
| CON-LEG101-LR-4440 |  | Installation of Concrete chambers [Local – 01 Segment-02] | 15d | 2026-04-21 A | 2026-05-05 A | CON-LEG101-LR-10990, CON-LEG101-LR-4330, CON-LEG101-LR-3790, CON-LEG101-PR-1990 | 100% |  | 2026-06-06 | 2026-06-22 |  |  | Single Catch basin as per drawings [5.07]; Double Catch basin as per drawings [0.84]; Curb inlet catch basin [3.13]; Outfall structure as per drawings [0.67]; Excavator [48 h]; Labor [100 h]; Skilled Labor [50 h]; Eq. Operator [50 h]; Pipe Fitter [50 h] | 114,470 | 114,470 | 1 | L01 -02 | A15720 |
| CON-LEG101-LR-11020 |  | Backfilling to Concrete chambers [Local – 01 Segment-02] | 6d | 2026-04-25 A | 2026-05-07 A | CON-LEG101-LR-11010, CON-LEG101-LR-4440, CON-LEG101-LR-10970 | 100% |  | 2026-06-08 | 2026-06-15 |  |  | Single Catch basin as per drawings [2.2]; Double Catch basin as per drawings [0.38]; Curb inlet catch basin [1.39] | 37,220 | 37,220 | 1 | L01 -02 |  |
| CON-LEG101-LR-11030 |  | FInishing and Testing of Concrete chambers [Local – 01 Segment-02] | 10d | 2026-07-04 A | 2026-11-24 | CON-LEG101-LR-11010, CON-LEG101-LR-11020, CON-LEG101-LR-10880 | 95% | 0.5d | 2026-08-18 | 2026-08-30 | 85.3d | 0d | Single Catch basin as per drawings [1.13]; Double Catch basin as per drawings [0.19]; Curb inlet catch basin [0.7] | 18,860 | 17,917 | 0.95 | L01 -02 |  |
|  | 4 | **Sanitary Sewerage** |  | 2026-03-11 | 2026-11-22 |  |  |  |  |  |  |  |  |  |  |  |  |  |
|  | 2 | **Pipe Work** |  | 2026-03-11 | 2026-05-09 |  |  |  |  |  |  |  |  |  |  |  |  |  |
| CON-LEG101-LR-2790 |  | Excavation for Sanitary Sewerage Network [Local – 01 Segment-02] | 7d | 2026-03-11 A | 2026-04-07 A | CON-LEG101-LR-4170, CON-LEG101-LR-4640, CON-LEG101-EN-1750, CON-LEG101-EN-1760, CON-LEG101-EN-1770, CON-LEG101-EN-3440 | 100% |  | 2026-04-08 | 2026-04-15 |  |  | Sanitary Sewerage 450mm Depth: 3.51m - 4.50m; Sanitary Sewerage 450mm Depth exceeds 4.50m; Sanitary Sewerage 150mm Diameter Depth: 0.00 m - 1.50 m.; Sanitary Sewerage 150mm Diameter Depth: 1.51m - 2.50m; Sanitary Sewerage 150mm Diameter Depth exceeds 2.50m; Sanitary Sewerage 200mm Depth exceeds 3.50m; Sanitary Sewerage 300mm Depth: 0.00 m - 1.50 m.; Sanitary Sewerage 450mm Depth: 0.00 m - 1.50 m.; Sanitary Sewerage 450mm Depth: 1.51m - 2.50m; Sanitary Sewerage 450mm Depth: 2.51m - 3.50m; Excavator [48 h]; Water Tanker [48 h]; Truck [96 h]; Crane [48 h]; Labor [400 h]; Driver [300 h]; Eq. Operator [200 h]; Sanitary Sewerage 200mm Depth: 0.00 m - 1.50 m. [8.65]; Sanitary Sewerage 200mm Depth: 1.51m - 2.50m [14.65]; Sanitary Sewerage 200mm Depth: 2.51m - 3.50m [7.29]; Sanitary Sewerage 300mm Depth: 1.51m - 2.50m [31.36]; Sanitary Sewerage 300mm Depth: 2.51m - 3.50m [32.7]; Sanitary Sewerage 300mm Depth exceeds 3.50m [2.68]; Sanitary Sewerage 350mm Depth: 0.00 m - 1.50 m. [2.68]; Sanitary Sewerage 350mm Depth: 1.51m - 2.50m [30.42]; Sanitary Sewerage 350mm Depth: 2.51m - 3.50m [11.93]; Sanitary Sewerage 350mm Depth exceeds 3.50m [2.68] | 91,211 | 91,211 | 1 | L01 -02 | A13220 |
| CON-LEG101-LR-2880 |  | Granular bedding for Sanitary Sewerage Network [Local – 01 Segment-02] | 4d | 2026-03-17 A | 2026-04-08 A | CON-LEG101-LR-2790 | 100% |  | 2026-04-18 | 2026-04-22 |  |  | Sanitary Sewerage 450mm Depth: 3.51m - 4.50m; Sanitary Sewerage 450mm Depth exceeds 4.50m; Sanitary Sewerage 150mm Diameter Depth: 0.00 m - 1.50 m.; Sanitary Sewerage 150mm Diameter Depth: 1.51m - 2.50m; Sanitary Sewerage 150mm Diameter Depth exceeds 2.50m; Sanitary Sewerage 200mm Depth exceeds 3.50m; Sanitary Sewerage 300mm Depth: 0.00 m - 1.50 m.; Sanitary Sewerage 450mm Depth: 0.00 m - 1.50 m.; Sanitary Sewerage 450mm Depth: 1.51m - 2.50m; Sanitary Sewerage 450mm Depth: 2.51m - 3.50m; Loader [48 h]; Truck [48 h]; Driver [50 h]; Eq. Operator [50 h]; Sanitary Sewerage 200mm Depth: 0.00 m - 1.50 m. [2.16]; Sanitary Sewerage 200mm Depth: 1.51m - 2.50m [3.66]; Sanitary Sewerage 200mm Depth: 2.51m - 3.50m [1.82]; Sanitary Sewerage 300mm Depth: 1.51m - 2.50m [7.83]; Sanitary Sewerage 300mm Depth: 2.51m - 3.50m [8.17]; Sanitary Sewerage 300mm Depth exceeds 3.50m [0.67]; Sanitary Sewerage 350mm Depth: 0.00 m - 1.50 m. [0.67]; Sanitary Sewerage 350mm Depth: 1.51m - 2.50m [7.61]; Sanitary Sewerage 350mm Depth: 2.51m - 3.50m [2.98]; Sanitary Sewerage 350mm Depth exceeds 3.50m [0.67] | 22,791.2 | 22,791.2 | 1 | L01 -02 | A13320 |
| CON-LEG101-LR-2970 |  | Installation of Pipe for Sanitary Sewerage Network [Local – 01 Segment-02] | 8d | 2026-03-24 A | 2026-04-09 A | CON-LEG101-PR-2560, CON-LEG101-LR-2880, CON-LEG101-PR-1720 | 100% |  | 2026-04-22 | 2026-05-02 |  |  | Sanitary Sewerage 450mm Depth: 3.51m - 4.50m; Sanitary Sewerage 450mm Depth exceeds 4.50m; Sanitary Sewerage 150mm Diameter Depth: 0.00 m - 1.50 m.; Sanitary Sewerage 150mm Diameter Depth: 1.51m - 2.50m; Sanitary Sewerage 150mm Diameter Depth exceeds 2.50m; Sanitary Sewerage 200mm Depth exceeds 3.50m; Sanitary Sewerage 300mm Depth: 0.00 m - 1.50 m.; Sanitary Sewerage 450mm Depth: 0.00 m - 1.50 m.; Sanitary Sewerage 450mm Depth: 1.51m - 2.50m; Sanitary Sewerage 450mm Depth: 2.51m - 3.50m; Excavator [48 h]; Crane [48 h]; Labor [150 h]; Skilled Labor [100 h]; Eq. Operator [100 h]; Plumber [50 h]; Pipe Fitter [50 h]; Sanitary Sewerage 200mm Depth: 0.00 m - 1.50 m. [19.46]; Sanitary Sewerage 200mm Depth: 1.51m - 2.50m [32.96]; Sanitary Sewerage 200mm Depth: 2.51m - 3.50m [16.4]; Sanitary Sewerage 300mm Depth: 1.51m - 2.50m [70.55]; Sanitary Sewerage 300mm Depth: 2.51m - 3.50m [73.57]; Sanitary Sewerage 300mm Depth exceeds 3.50m [6.03]; Sanitary Sewerage 350mm Depth: 0.00 m - 1.50 m. [6.03]; Sanitary Sewerage 350mm Depth: 1.51m - 2.50m [68.44]; Sanitary Sewerage 350mm Depth: 2.51m - 3.50m [26.84]; Sanitary Sewerage 350mm Depth exceeds 3.50m [6.03] | 205,207.2 | 205,207.2 | 1 | L01 -02 | A13420 |
| CON-LEG101-LR-3060 |  | Testing for Sanitary Sewerage Network [Local – 01 Segment-02] | 4d | 2026-04-01 A | 2026-05-06 A | CON-LEG101-LR-2970 | 100% |  | 2026-05-04 | 2026-05-09 |  |  | Sanitary Sewerage 450mm Depth: 3.51m - 4.50m; Sanitary Sewerage 450mm Depth exceeds 4.50m; Sanitary Sewerage 150mm Diameter Depth: 0.00 m - 1.50 m.; Sanitary Sewerage 150mm Diameter Depth: 1.51m - 2.50m; Sanitary Sewerage 150mm Diameter Depth exceeds 2.50m; Sanitary Sewerage 200mm Depth exceeds 3.50m; Sanitary Sewerage 300mm Depth: 0.00 m - 1.50 m.; Sanitary Sewerage 450mm Depth: 0.00 m - 1.50 m.; Sanitary Sewerage 450mm Depth: 1.51m - 2.50m; Sanitary Sewerage 450mm Depth: 2.51m - 3.50m; Labor [200 h]; Skilled Labor [100 h]; Pipe Fitter [100 h]; Sanitary Sewerage 200mm Depth: 0.00 m - 1.50 m. [4.33]; Sanitary Sewerage 200mm Depth: 1.51m - 2.50m [7.32]; Sanitary Sewerage 200mm Depth: 2.51m - 3.50m [3.64]; Sanitary Sewerage 300mm Depth: 1.51m - 2.50m [15.68]; Sanitary Sewerage 300mm Depth: 2.51m - 3.50m [16.35]; Sanitary Sewerage 300mm Depth exceeds 3.50m [1.34]; Sanitary Sewerage 350mm Depth: 0.00 m - 1.50 m. [1.34]; Sanitary Sewerage 350mm Depth: 1.51m - 2.50m [15.21]; Sanitary Sewerage 350mm Depth: 2.51m - 3.50m [5.96]; Sanitary Sewerage 350mm Depth exceeds 3.50m [1.34] | 45,598.6 | 45,598.6 | 1 | L01 -02 | A13520 |
| CON-LEG101-LR-3150 |  | Concrete encasement, pipe dia 200 and 350 mm [Local – 01 Segment-02] | 3d | 2026-04-02 A | 2026-04-11 A | CON-LEG101-LR-3060, CON-LEG101-EN-3450, CON-LEG101-PR-1430 | 100% |  | 2026-05-09 | 2026-05-12 |  |  | Sanitary Sewerage - Concrete encasement pipe dia 200 mm; Sanitary Sewerage Concrete encasement pipe dia 350 mm [16.75]; Labor [300 h]; Carpenter [75 h]; Mason [150 h] | 8,375 | 8,375 | 1 | L01 -02 | A13660 |
| CON-LEG101-LR-3240 |  | Granular Surround for Sanitary Sewerage Network [Local – 01 Segment-02] | 4d | 2026-04-04 A | 2026-04-11 A | CON-LEG101-LR-3150, CON-LEG101-EN-3450 | 100% |  | 2026-05-12 | 2026-05-17 |  |  | Sanitary Sewerage 450mm Depth: 3.51m - 4.50m; Sanitary Sewerage 450mm Depth exceeds 4.50m; Sanitary Sewerage 150mm Diameter Depth: 0.00 m - 1.50 m.; Sanitary Sewerage 150mm Diameter Depth: 1.51m - 2.50m; Sanitary Sewerage 150mm Diameter Depth exceeds 2.50m; Sanitary Sewerage 200mm Depth exceeds 3.50m; Sanitary Sewerage 300mm Depth: 0.00 m - 1.50 m.; Sanitary Sewerage 450mm Depth: 0.00 m - 1.50 m.; Sanitary Sewerage 450mm Depth: 1.51m - 2.50m; Sanitary Sewerage 450mm Depth: 2.51m - 3.50m; Loader [48 h]; Truck [48 h]; Driver [75 h]; Eq. Operator [75 h]; Sanitary Sewerage 200mm Depth: 0.00 m - 1.50 m. [2.16]; Sanitary Sewerage 200mm Depth: 1.51m - 2.50m [3.66]; Sanitary Sewerage 200mm Depth: 2.51m - 3.50m [1.82]; Sanitary Sewerage 300mm Depth: 1.51m - 2.50m [7.84]; Sanitary Sewerage 300mm Depth: 2.51m - 3.50m [8.17]; Sanitary Sewerage 300mm Depth exceeds 3.50m [0.67]; Sanitary Sewerage 350mm Depth: 0.00 m - 1.50 m. [0.67]; Sanitary Sewerage 350mm Depth: 1.51m - 2.50m [7.6]; Sanitary Sewerage 350mm Depth: 2.51m - 3.50m [2.98]; Sanitary Sewerage 350mm Depth exceeds 3.50m [0.67] | 22,790.7 | 22,790.7 | 1 | L01 -02 | A13750 |
| CON-LEG101-LR-3330 |  | Installation of Micron Marker Magnetic Tape [Local – 01 Segment-02] | 2d | 2026-04-11 A | 2026-05-07 A | CON-LEG101-LR-3240 | 100% |  | 2026-05-09 | 2026-05-10 |  |  | Sanitary Sewerage 450mm Depth: 3.51m - 4.50m; Sanitary Sewerage 450mm Depth exceeds 4.50m; Sanitary Sewerage 150mm Diameter Depth: 0.00 m - 1.50 m.; Sanitary Sewerage 150mm Diameter Depth: 1.51m - 2.50m; Sanitary Sewerage 150mm Diameter Depth exceeds 2.50m; Sanitary Sewerage 200mm Depth exceeds 3.50m; Sanitary Sewerage 300mm Depth: 0.00 m - 1.50 m.; Sanitary Sewerage 450mm Depth: 0.00 m - 1.50 m.; Sanitary Sewerage 450mm Depth: 1.51m - 2.50m; Sanitary Sewerage 450mm Depth: 2.51m - 3.50m; Labor [150 h]; Sanitary Sewerage 200mm Depth: 0.00 m - 1.50 m. [2.16]; Sanitary Sewerage 200mm Depth: 1.51m - 2.50m [3.66]; Sanitary Sewerage 200mm Depth: 2.51m - 3.50m [1.82]; Sanitary Sewerage 300mm Depth: 1.51m - 2.50m [7.84]; Sanitary Sewerage 300mm Depth: 2.51m - 3.50m [8.17]; Sanitary Sewerage 300mm Depth exceeds 3.50m [0.67]; Sanitary Sewerage 350mm Depth: 0.00 m - 1.50 m. [0.67]; Sanitary Sewerage 350mm Depth: 1.51m - 2.50m [7.6]; Sanitary Sewerage 350mm Depth: 2.51m - 3.50m [2.98]; Sanitary Sewerage 350mm Depth exceeds 3.50m [0.67] | 22,790.7 | 22,790.7 | 1 | L01 -02 | A13850 |
| CON-LEG101-LR-3420 |  | Backfilling to Subgrade Elevation [Local – 01 Segment-02] | 6d | 2026-04-12 A | 2026-05-09 A | CON-LEG101-LR-3330, CON-LEG101-EN-3440 | 100% |  | 2026-05-11 | 2026-05-17 |  |  | Sanitary Sewerage 450mm Depth: 3.51m - 4.50m; Sanitary Sewerage 450mm Depth exceeds 4.50m; Sanitary Sewerage 150mm Diameter Depth: 0.00 m - 1.50 m.; Sanitary Sewerage 150mm Diameter Depth: 1.51m - 2.50m; Sanitary Sewerage 150mm Diameter Depth exceeds 2.50m; Sanitary Sewerage 200mm Depth exceeds 3.50m; Sanitary Sewerage 300mm Depth: 0.00 m - 1.50 m.; Sanitary Sewerage 450mm Depth: 0.00 m - 1.50 m.; Sanitary Sewerage 450mm Depth: 1.51m - 2.50m; Sanitary Sewerage 450mm Depth: 2.51m - 3.50m; Excavator [48 h]; Water Tanker [48 h]; Road Roller [48 h]; Bucket [48 h]; Compactor [48 h]; Labor [150 h]; Driver [75 h]; Eq. Operator [300 h]; Sanitary Sewerage 200mm Depth: 0.00 m - 1.50 m. [4.33]; Sanitary Sewerage 200mm Depth: 1.51m - 2.50m [7.32]; Sanitary Sewerage 200mm Depth: 2.51m - 3.50m [3.64]; Sanitary Sewerage 300mm Depth: 1.51m - 2.50m [15.68]; Sanitary Sewerage 300mm Depth: 2.51m - 3.50m [16.35]; Sanitary Sewerage 300mm Depth exceeds 3.50m [1.34]; Sanitary Sewerage 350mm Depth: 0.00 m - 1.50 m. [1.34]; Sanitary Sewerage 350mm Depth: 1.51m - 2.50m [15.21]; Sanitary Sewerage 350mm Depth: 2.51m - 3.50m [5.96]; Sanitary Sewerage 350mm Depth exceeds 3.50m [1.34] | 45,598.6 | 45,598.6 | 1 | L01 -02 | A13950 |
|  | 1 | **Manhole** |  | 2026-03-11 | 2026-11-22 |  |  |  |  |  |  |  |  |  |  |  |  |  |
| CON-LEG101-LR-3510 |  | Installation of Fiberglass Manholes [Local – 01 Segment-02] | 21d | 2026-03-11 A | 2026-11-22 | CON-LEG101-PR-2570, CON-LEG101-LR-2970, CON-LEG101-PR-1750 | 98% | 0.42d | 2026-04-30 | 2026-05-24 | 28.58d | 0d | Sanitary Sewerage MH depth 0.00 m - 1.50 m.; Sanitary Sewerage MH depth 1.51 - 2.50 m; Sanitary Sewerage MH depth 2.51 - 3.50 m; Sanitary Sewerage MH depth 2.51 - 3.50 m with back drop; Sanitary Sewerage MH depth 3.51 - 4.50 m; Sanitary Sewerage MH depth exceeds 3.50 m with back drop; Sanitary Sewerage MH depth exceeds 4.50 m; Sanitary Sewerage MH depth 1.51 - 2.50 m with back drop [2.68]; Excavator [48 h]; Bucket [48 h]; Compactor [48 h]; Labor [100 h]; Eq. Operator [150 h]; Pipe Fitter [100 h] | 53,600 | 52,528 | 0.98 | L01 -02 | A14160 |
|  | 3 | **LOCAL - 01 Segment-03 (From 2+133 to 3+200)** |  | 2026-01-01 | 2026-11-25 |  |  |  |  |  |  |  |  |  |  |  |  |  |
|  | 1 | **Stormwater Utilities** |  | 2026-01-01 | 2026-11-25 |  |  |  |  |  |  |  |  |  |  |  |  |  |
|  | 2 | **Pipe Work** |  | 2026-01-01 | 2026-03-12 |  |  |  |  |  |  |  |  |  |  |  |  |  |
| CON-LEG101-LR-3600 |  | Excavation for Stormwater Utilities Network [Local – 01 Segment-03] | 10d | 2026-01-01 A | 2026-02-10 A | CON-LEG101-LR-3590, CON-LEG101-SD-1000, CON-LEG101-LR-1540, CON-LEG101-EN-1780, CON-LEG101-EN-1790, CON-LEG101-EN-1800, CON-LEG101-EN-3440 | 100% |  | 2026-03-17 | 2026-04-02 |  |  | Stormwater Utilities - GRP Pipes - 400 mm Diameter Depth: 0.00 m - 1.50 m.; Stormwater Utilities - GRP Pipes - 400 mm Depth: 1.51m - 2.50m; Stormwater Utilities - GRP Pipes - 400 mm Depth exceeds 2.50m; Stormwater Utilities - GRP Pipes - 500 mm Depth: 0.00 m - 1.50 m.; Stormwater Utilities - GRP Pipes - 500 mm Depth: 3.51m - 4.50m; Stormwater Utilities - GRP Pipes - 500 mm Depth exceeds 4.50m; Stormwater Utilities - GRP Pipes - 600 mm Depth: 3.51m - 4.50m; Stormwater Utilities - GRP Pipes - 600 mm Depth exceeds 4.50m; Stormwater Utilities - GRP Pipes - 700 mm Depth: 1.51m - 2.50m; Stormwater Utilities - GRP Pipes - 700 mm Depth: 2.51m - 3.50m; Stormwater Utilities - GRP Pipes - 700 mm Depth exceeds 3.50m; Stormwater Utilities - GRP Pipes - 800 mm Depth: 1.51m - 2.50m; Stormwater Utilities - GRP Pipes - 800 mm Depth: 2.51m - 3.50m; Stormwater Utilities - GRP Pipes - 800 mm Depth exceeds 3.50m; Excavator [48 h]; Water Tanker [48 h]; Truck [96 h]; Crane [48 h]; Labor [200 h]; Driver [150 h]; Eq. Operator [100 h]; Stormwater Utilities - GRP Pipes - 500 mm Depth: 1.51m - 2.50m [77.5]; Stormwater Utilities - GRP Pipes - 500 mm Depth: 2.51m - 3.50m [32.36]; Stormwater Utilities - GRP Pipes - 600 mm Depth: 1.51m - 2.50m [8.45]; Stormwater Utilities - GRP Pipes - 600 mm Depth: 2.51m - 3.50m [78.26] | 149,121.5 | 149,121.5 | 1 | L01-03 | A14690 |
| CON-LEG101-LR-3700 |  | Granular bedding for Stormwater Utilities Network [Local – 01 Segment-03] | 4d | 2026-01-03 A | 2026-02-12 A | CON-LEG101-LR-3600 | 100% |  | 2026-04-02 | 2026-04-07 |  |  | Stormwater Utilities - GRP Pipes - 400 mm Diameter Depth: 0.00 m - 1.50 m.; Stormwater Utilities - GRP Pipes - 400 mm Depth: 1.51m - 2.50m; Stormwater Utilities - GRP Pipes - 400 mm Depth exceeds 2.50m; Stormwater Utilities - GRP Pipes - 500 mm Depth: 0.00 m - 1.50 m.; Stormwater Utilities - GRP Pipes - 500 mm Depth: 3.51m - 4.50m; Stormwater Utilities - GRP Pipes - 500 mm Depth exceeds 4.50m; Stormwater Utilities - GRP Pipes - 600 mm Depth: 3.51m - 4.50m; Stormwater Utilities - GRP Pipes - 600 mm Depth exceeds 4.50m; Stormwater Utilities - GRP Pipes - 700 mm Depth: 1.51m - 2.50m; Stormwater Utilities - GRP Pipes - 700 mm Depth: 2.51m - 3.50m; Stormwater Utilities - GRP Pipes - 700 mm Depth exceeds 3.50m; Stormwater Utilities - GRP Pipes - 800 mm Depth: 1.51m - 2.50m; Stormwater Utilities - GRP Pipes - 800 mm Depth: 2.51m - 3.50m; Stormwater Utilities - GRP Pipes - 800 mm Depth exceeds 3.50m; Loader [48 h]; Truck [48 h]; Driver [50 h]; Eq. Operator [50 h]; Stormwater Utilities - GRP Pipes - 500 mm Depth: 1.51m - 2.50m [19.38]; Stormwater Utilities - GRP Pipes - 500 mm Depth: 2.51m - 3.50m [8.09]; Stormwater Utilities - GRP Pipes - 600 mm Depth: 1.51m - 2.50m [2.11]; Stormwater Utilities - GRP Pipes - 600 mm Depth: 2.51m - 3.50m [19.56] | 37,277.5 | 37,277.5 | 1 | L01-03 | A14800 |
| CON-LEG101-LR-3800 |  | Installation of Pipe for Stormwater Utilities Network [Local – 01 Segment-03] | 8d | 2026-01-04 A | 2026-02-14 A | CON-LEG101-PR-2100, CON-LEG101-PR-2110, CON-LEG101-LR-3700, CON-LEG101-PR-1780, CON-LEG101-PR-1810 | 100% |  | 2026-05-23 | 2026-06-06 |  |  | Stormwater Utilities - GRP Pipes - 400 mm Diameter Depth: 0.00 m - 1.50 m.; Stormwater Utilities - GRP Pipes - 400 mm Depth: 1.51m - 2.50m; Stormwater Utilities - GRP Pipes - 400 mm Depth exceeds 2.50m; Stormwater Utilities - GRP Pipes - 500 mm Depth: 0.00 m - 1.50 m.; Stormwater Utilities - GRP Pipes - 500 mm Depth: 3.51m - 4.50m; Stormwater Utilities - GRP Pipes - 500 mm Depth exceeds 4.50m; Stormwater Utilities - GRP Pipes - 600 mm Depth: 3.51m - 4.50m; Stormwater Utilities - GRP Pipes - 600 mm Depth exceeds 4.50m; Stormwater Utilities - GRP Pipes - 700 mm Depth: 1.51m - 2.50m; Stormwater Utilities - GRP Pipes - 700 mm Depth: 2.51m - 3.50m; Stormwater Utilities - GRP Pipes - 700 mm Depth exceeds 3.50m; Stormwater Utilities - GRP Pipes - 800 mm Depth: 1.51m - 2.50m; Stormwater Utilities - GRP Pipes - 800 mm Depth: 2.51m - 3.50m; Stormwater Utilities - GRP Pipes - 800 mm Depth exceeds 3.50m; Excavator [48 h]; Crane [48 h]; Labor [150 h]; Skilled Labor [100 h]; Eq. Operator [100 h]; Plumber [50 h]; Pipe Fitter [50 h]; Stormwater Utilities - GRP Pipes - 500 mm Depth: 1.51m - 2.50m [174.43]; Stormwater Utilities - GRP Pipes - 500 mm Depth: 2.51m - 3.50m [72.82]; Stormwater Utilities - GRP Pipes - 600 mm Depth: 1.51m - 2.50m [18.99]; Stormwater Utilities - GRP Pipes - 600 mm Depth: 2.51m - 3.50m [176.08] | 335,546 | 335,546 | 1 | L01-03 | A14910 |
| CON-LEG101-LR-4000 |  | Granular Surround for Stormwater Utilities Network [Local – 01 Segment-03] | 4d | 2026-01-05 A | 2026-02-15 A | CON-LEG101-LR-3900, CON-LEG101-EN-3450 | 100% |  | 2026-06-10 | 2026-06-15 |  |  | Stormwater Utilities - GRP Pipes - 400 mm Diameter Depth: 0.00 m - 1.50 m.; Stormwater Utilities - GRP Pipes - 400 mm Depth: 1.51m - 2.50m; Stormwater Utilities - GRP Pipes - 400 mm Depth exceeds 2.50m; Stormwater Utilities - GRP Pipes - 500 mm Depth: 0.00 m - 1.50 m.; Stormwater Utilities - GRP Pipes - 500 mm Depth: 3.51m - 4.50m; Stormwater Utilities - GRP Pipes - 500 mm Depth exceeds 4.50m; Stormwater Utilities - GRP Pipes - 600 mm Depth: 3.51m - 4.50m; Stormwater Utilities - GRP Pipes - 600 mm Depth exceeds 4.50m; Stormwater Utilities - GRP Pipes - 700 mm Depth: 1.51m - 2.50m; Stormwater Utilities - GRP Pipes - 700 mm Depth: 2.51m - 3.50m; Stormwater Utilities - GRP Pipes - 700 mm Depth exceeds 3.50m; Stormwater Utilities - GRP Pipes - 800 mm Depth: 1.51m - 2.50m; Stormwater Utilities - GRP Pipes - 800 mm Depth: 2.51m - 3.50m; Stormwater Utilities - GRP Pipes - 800 mm Depth exceeds 3.50m; Loader [48 h]; Truck [48 h]; Driver [75 h]; Eq. Operator [75 h]; Stormwater Utilities - GRP Pipes - 500 mm Depth: 1.51m - 2.50m [19.38]; Stormwater Utilities - GRP Pipes - 500 mm Depth: 2.51m - 3.50m [8.09]; Stormwater Utilities - GRP Pipes - 600 mm Depth: 1.51m - 2.50m [2.11]; Stormwater Utilities - GRP Pipes - 600 mm Depth: 2.51m - 3.50m [19.56] | 37,277.5 | 37,277.5 | 1 | L01-03 | A15130 |
| CON-LEG101-LR-3900 |  | Testing for Stormwater Utilities Network [Local – 01 Segment-03] | 4d | 2026-01-06 A | 2026-03-02 A | CON-LEG101-LR-3800 | 100% |  | 2026-06-06 | 2026-06-10 |  |  | Stormwater Utilities - GRP Pipes - 400 mm Diameter Depth: 0.00 m - 1.50 m.; Stormwater Utilities - GRP Pipes - 400 mm Depth: 1.51m - 2.50m; Stormwater Utilities - GRP Pipes - 400 mm Depth exceeds 2.50m; Stormwater Utilities - GRP Pipes - 500 mm Depth: 0.00 m - 1.50 m.; Stormwater Utilities - GRP Pipes - 500 mm Depth: 3.51m - 4.50m; Stormwater Utilities - GRP Pipes - 500 mm Depth exceeds 4.50m; Stormwater Utilities - GRP Pipes - 600 mm Depth: 3.51m - 4.50m; Stormwater Utilities - GRP Pipes - 600 mm Depth exceeds 4.50m; Stormwater Utilities - GRP Pipes - 700 mm Depth: 1.51m - 2.50m; Stormwater Utilities - GRP Pipes - 700 mm Depth: 2.51m - 3.50m; Stormwater Utilities - GRP Pipes - 700 mm Depth exceeds 3.50m; Stormwater Utilities - GRP Pipes - 800 mm Depth: 1.51m - 2.50m; Stormwater Utilities - GRP Pipes - 800 mm Depth: 2.51m - 3.50m; Stormwater Utilities - GRP Pipes - 800 mm Depth exceeds 3.50m; Labor [300 h]; Skilled Labor [150 h]; Pipe Fitter [150 h]; Stormwater Utilities - GRP Pipes - 500 mm Depth: 1.51m - 2.50m [38.77]; Stormwater Utilities - GRP Pipes - 500 mm Depth: 2.51m - 3.50m [16.18]; Stormwater Utilities - GRP Pipes - 600 mm Depth: 1.51m - 2.50m [4.22]; Stormwater Utilities - GRP Pipes - 600 mm Depth: 2.51m - 3.50m [39.13] | 74,570 | 74,570 | 1 | L01-03 | A15020 |
| CON-LEG101-LR-4110 |  | Installation of Micron Marker Magnetic Tape [Local – 01 Segment-03] | 2d | 2026-02-25 A | 2026-03-11 A | CON-LEG101-LR-4000 | 100% |  | 2026-04-21 | 2026-04-23 |  |  | Stormwater Utilities - GRP Pipes - 400 mm Diameter Depth: 0.00 m - 1.50 m.; Stormwater Utilities - GRP Pipes - 400 mm Depth: 1.51m - 2.50m; Stormwater Utilities - GRP Pipes - 400 mm Depth exceeds 2.50m; Stormwater Utilities - GRP Pipes - 500 mm Depth: 0.00 m - 1.50 m.; Stormwater Utilities - GRP Pipes - 500 mm Depth: 3.51m - 4.50m; Stormwater Utilities - GRP Pipes - 500 mm Depth exceeds 4.50m; Stormwater Utilities - GRP Pipes - 600 mm Depth: 3.51m - 4.50m; Stormwater Utilities - GRP Pipes - 600 mm Depth exceeds 4.50m; Stormwater Utilities - GRP Pipes - 700 mm Depth: 1.51m - 2.50m; Stormwater Utilities - GRP Pipes - 700 mm Depth: 2.51m - 3.50m; Stormwater Utilities - GRP Pipes - 700 mm Depth exceeds 3.50m; Stormwater Utilities - GRP Pipes - 800 mm Depth: 1.51m - 2.50m; Stormwater Utilities - GRP Pipes - 800 mm Depth: 2.51m - 3.50m; Stormwater Utilities - GRP Pipes - 800 mm Depth exceeds 3.50m; Labor [150 h]; Stormwater Utilities - GRP Pipes - 500 mm Depth: 1.51m - 2.50m [19.38]; Stormwater Utilities - GRP Pipes - 500 mm Depth: 2.51m - 3.50m [8.09]; Stormwater Utilities - GRP Pipes - 600 mm Depth: 1.51m - 2.50m [2.11]; Stormwater Utilities - GRP Pipes - 600 mm Depth: 2.51m - 3.50m [19.56] | 37,277.5 | 37,277.5 | 1 | L01-03 | A15240 |
| CON-LEG101-LR-4220 |  | Backfilling to Subgrade Elevation [Local – 01 Segment-03] | 6d | 2026-02-25 A | 2026-03-12 A | CON-LEG101-LR-4110, CON-LEG101-EN-3440 | 100% |  | 2026-04-23 | 2026-04-30 |  |  | Stormwater Utilities - GRP Pipes - 400 mm Diameter Depth: 0.00 m - 1.50 m.; Stormwater Utilities - GRP Pipes - 400 mm Depth: 1.51m - 2.50m; Stormwater Utilities - GRP Pipes - 400 mm Depth exceeds 2.50m; Stormwater Utilities - GRP Pipes - 500 mm Depth: 0.00 m - 1.50 m.; Stormwater Utilities - GRP Pipes - 500 mm Depth: 3.51m - 4.50m; Stormwater Utilities - GRP Pipes - 500 mm Depth exceeds 4.50m; Stormwater Utilities - GRP Pipes - 600 mm Depth: 3.51m - 4.50m; Stormwater Utilities - GRP Pipes - 600 mm Depth exceeds 4.50m; Stormwater Utilities - GRP Pipes - 700 mm Depth: 1.51m - 2.50m; Stormwater Utilities - GRP Pipes - 700 mm Depth: 2.51m - 3.50m; Stormwater Utilities - GRP Pipes - 700 mm Depth exceeds 3.50m; Stormwater Utilities - GRP Pipes - 800 mm Depth: 1.51m - 2.50m; Stormwater Utilities - GRP Pipes - 800 mm Depth: 2.51m - 3.50m; Stormwater Utilities - GRP Pipes - 800 mm Depth exceeds 3.50m; Excavator [48 h]; Water Tanker [48 h]; Road Roller [48 h]; Bucket [48 h]; Compactor [48 h]; Labor [150 h]; Driver [75 h]; Eq. Operator [300 h]; Stormwater Utilities - GRP Pipes - 500 mm Depth: 1.51m - 2.50m [38.77]; Stormwater Utilities - GRP Pipes - 500 mm Depth: 2.51m - 3.50m [16.18]; Stormwater Utilities - GRP Pipes - 600 mm Depth: 1.51m - 2.50m [4.22]; Stormwater Utilities - GRP Pipes - 600 mm Depth: 2.51m - 3.50m [39.13] | 74,570 | 74,570 | 1 | L01-03 | A15350 |

| ID | WBS | Activity | Duration | Start | Finish | Predecessors | Complete | Remaining | Planned start | Planned finish | Total float | Free float | Resources | Cost | Actual cost | % A | JEDDAH 1 - Area Name | Mapping Sheet Activity ID |
| --- | --- | --- | --- | --- | --- | --- | --- | --- | --- | --- | --- | --- | --- | --- | --- | --- | --- | --- |
|  | 1 | **Manhole** |  | 2026-01-01 | 2026-11-22 |  |  |  |  |  |  |  |  |  |  |  |  |  |
| CON-LEG101-LR-11040 |  | Excavation of Inlet Manholes [Local – 01 Segment-03] | 6d | 2026-01-01 A | 2026-02-10 A | CON-LEG101-LR-3600 | 100% |  | 2026-04-02 | 2026-04-09 |  |  | Stormwater Utilities - (ring 1200 mm internal dia.) MH depth 1.51 - 2.50m [2.05]; Stormwater Utilities - (ring 1200 mm internal dia.) MH depth 2.51 - 3.50m [0.43]; Stormwater Utilities - (ring 1200 mm internal dia.) MH depth 3.51 - 4.50m [0.7]; Stormwater Utilities - (ring 1500 mm internal dia.) MH depth exceeds 3.50m [0.1]; Stormwater Utilities - (ring 1500 mm internal dia.) MH depth 2.51 - 3.50m [0.6]; Stormwater Utilities - (ring 1200 mm internal dia.) MH depth exceeds 4.50m; Stormwater Utilities - (ring 1500 mm internal dia.) MH depth 1.51 - 2.50m | 76,850 | 76,850 | 1 | L01-03 |  |
| CON-LEG101-LR-11050 |  | PC of Inlet Manholes [Local – 01 Segment-03] | 3d | 2026-01-15 A | 2026-02-14 A | CON-LEG101-LR-11040 | 100% |  | 2026-03-26 | 2026-03-30 |  |  | Stormwater Utilities - (ring 1200 mm internal dia.) MH depth 1.51 - 2.50m [1.35]; Stormwater Utilities - (ring 1200 mm internal dia.) MH depth 2.51 - 3.50m [0.29]; Stormwater Utilities - (ring 1200 mm internal dia.) MH depth 3.51 - 4.50m [0.47]; Stormwater Utilities - (ring 1500 mm internal dia.) MH depth exceeds 3.50m [0.07]; Stormwater Utilities - (ring 1500 mm internal dia.) MH depth 2.51 - 3.50m [0.4]; Stormwater Utilities - (ring 1200 mm internal dia.) MH depth exceeds 4.50m; Stormwater Utilities - (ring 1500 mm internal dia.) MH depth 1.51 - 2.50m | 51,200 | 51,200 | 1 | L01-03 |  |
| CON-LEG101-LR-4340 |  | Installation of Inlet Manholes [Local – 01 Segment-03] | 14d | 2026-01-21 A | 2026-06-01 A | CON-LEG101-LR-11050, CON-LEG101-LR-3800, CON-LEG101-PR-1980 | 100% |  | 2026-06-15 | 2026-07-01 |  |  | Stormwater Utilities - (ring 1200 mm internal dia.) MH depth exceeds 4.50m; Stormwater Utilities - (ring 1500 mm internal dia.) MH depth 1.51 - 2.50m; Stormwater Utilities - (ring 1200 mm internal dia.) MH depth 1.51 - 2.50m [6.06]; Stormwater Utilities - (ring 1200 mm internal dia.) MH depth 2.51 - 3.50m [1.28]; Stormwater Utilities - (ring 1200 mm internal dia.) MH depth 3.51 - 4.50m [2.11]; Stormwater Utilities - (ring 1500 mm internal dia.) MH depth exceeds 3.50m [0.3]; Excavator [48 h]; Bucket [48 h]; Compactor [48 h]; Labor [150 h]; Eq. Operator [225 h]; Pipe Fitter [150 h]; Stormwater Utilities - (ring 1500 mm internal dia.) MH depth 2.51 - 3.50m [1.82] | 229,640 | 229,640 | 1 | L01-03 | A15580 |
| CON-LEG101-LR-11060 |  | Backfilling of Inlet Manholes [Local – 01 Segment-03] | 6d | 2026-03-26 A | 2026-06-04 A | CON-LEG101-LR-4340 | 100% |  | 2026-05-20 | 2026-06-01 |  |  | Stormwater Utilities - (ring 1200 mm internal dia.) MH depth 1.51 - 2.50m [2.69]; Stormwater Utilities - (ring 1200 mm internal dia.) MH depth 2.51 - 3.50m [0.57]; Stormwater Utilities - (ring 1200 mm internal dia.) MH depth 3.51 - 4.50m [0.94]; Stormwater Utilities - (ring 1500 mm internal dia.) MH depth exceeds 3.50m [0.13]; Stormwater Utilities - (ring 1500 mm internal dia.) MH depth 2.51 - 3.50m [0.8]; Stormwater Utilities - (ring 1200 mm internal dia.) MH depth exceeds 4.50m; Stormwater Utilities - (ring 1500 mm internal dia.) MH depth 1.51 - 2.50m | 101,760 | 101,760 | 1 | L01-03 |  |
| CON-LEG101-LR-11070 |  | Finishing and Testing of Inlet Manholes [Local – 01 Segment-03] | 6d | 2026-03-28 A | 2026-11-22 | CON-LEG101-LR-11060, CON-LEG101-LR-4340, CON-LEG101-LR-10970 | 95% | 0.3d | 2026-06-06 | 2026-06-13 | 55.7d | 0d | Stormwater Utilities - (ring 1200 mm internal dia.) MH depth 1.51 - 2.50m [1.35]; Stormwater Utilities - (ring 1200 mm internal dia.) MH depth 2.51 - 3.50m [0.29]; Stormwater Utilities - (ring 1200 mm internal dia.) MH depth 3.51 - 4.50m [0.47]; Stormwater Utilities - (ring 1500 mm internal dia.) MH depth exceeds 3.50m [0.07]; Stormwater Utilities - (ring 1500 mm internal dia.) MH depth 2.51 - 3.50m [0.4]; Stormwater Utilities - (ring 1200 mm internal dia.) MH depth exceeds 4.50m; Stormwater Utilities - (ring 1500 mm internal dia.) MH depth 1.51 - 2.50m | 51,200 | 48,640 | 0.9 | L01-03 |  |
|  | 3 | **Concrete Chambers/Outfalls** |  | 2026-04-21 | 2026-11-25 |  |  |  |  |  |  |  |  |  |  |  |  |  |
| CON-LEG101-LR-11080 |  | Excavation of Concrete chambers [Local – 01 Segment-03] | 6d | 2026-04-21 A | 2026-07-01 A | CON-LEG101-LR-4340 | 100% |  | 2026-05-25 | 2026-06-06 |  |  | Single Catch basin as per drawings [1.69]; Double Catch basin as per drawings [0.28]; Curb inlet catch basin [1.05] | 28,200 | 28,200 | 1 | L01-03 |  |
| CON-LEG101-LR-11090 |  | PC of Concrete chambers [Local – 01 Segment-03] | 2d | 2026-04-23 A | 2026-07-01 A | CON-LEG101-LR-11080 | 100% |  | 2026-06-06 | 2026-06-08 |  |  | Single Catch basin as per drawings [1.13]; Double Catch basin as per drawings [0.19]; Curb inlet catch basin [0.7] | 18,860 | 18,860 | 1 | L01-03 |  |
| CON-LEG101-LR-4450 |  | Installation of Concrete chambers [Local – 01 Segment-03] | 10d | 2026-05-19 A | 2026-07-02 A | CON-LEG101-LR-11090, CON-LEG101-LR-4340, CON-LEG101-LR-3800, CON-LEG101-PR-1990 | 100% |  | 2026-06-25 | 2026-07-07 |  |  | Single Catch basin as per drawings [5.07]; Double Catch basin as per drawings [0.84]; Curb inlet catch basin [3.13]; Excavator [48 h]; Labor [100 h]; Skilled Labor [50 h]; Eq. Operator [50 h]; Pipe Fitter [50 h] | 84,320 | 84,320 | 1 | L01-03 | A15730 |
| CON-LEG101-LR-11110 |  | Installation UPVC Pipes to Concrete chambers [Local – 01 Segment-03] | 8d | 2026-05-20 A | 2026-07-02 A | CON-LEG101-LR-11080, CON-LEG101-LR-4450, CON-LEG101-LR-11070 | 100% |  | 2026-07-07 | 2026-07-16 |  |  | Stormwater Utilities - PVC Pipes - 300 mm Diameter Depth: 0.00 m - 1.50 m. [105.02]; Stormwater Utilities - PVC Pipes - 300 mm Diameter Depth: 1.51m - 2.50m [153.87]; Stormwater Utilities - PVC Pipes - 500 mm Depth: 1.51m - 2.50m [47.54]; Stormwater Utilities - PVC Pipes - 300 mm Diameter Depth exceeds 2.50m; Stormwater Utilities - PVC Pipes - 400 mm Diameter Depth: 0.00 m - 1.50 m.; Stormwater Utilities - PVC Pipes - 500 mm Depth: 0.00 m - 1.50 m.; Stormwater Utilities - PVC Pipes - 400 mm Diameter Depth: 1.51m - 2.50m; Stormwater Utilities - PVC Pipes - 400 mm Diameter Depth exceeds 2.50m; Stormwater Utilities - PVC Pipes - 500 mm Depth exceeds 2.50m | 145,478.3 | 145,478.3 | 1 | L01-03 |  |
| CON-LEG101-LR-11120 |  | Backfilling to Concrete chambers [Local – 01 Segment-03] | 6d | 2026-06-01 A | 2026-07-04 A | CON-LEG101-LR-11110 | 100% |  | 2026-07-20 | 2026-07-27 |  |  | Single Catch basin as per drawings [2.26]; Double Catch basin as per drawings [0.38]; Curb inlet catch basin [1.39] | 37,580 | 37,580 | 1 | L01-03 |  |
| CON-LEG101-LR-11130 |  | FInishing and Testing of Concrete chambers [Local – 01 Segment-03] | 6d | 2026-08-19 A | 2026-11-25 | CON-LEG101-LR-11110, CON-LEG101-LR-11120, CON-LEG101-LR-11030 | 95% | 0.3d | 2026-09-21 | 2026-09-29 | 85.3d | 0d | Single Catch basin as per drawings [1.13]; Double Catch basin as per drawings [0.19]; Curb inlet catch basin [0.7] | 18,860 | 17,917 | 0.9 | L01-03 |  |
|  | 4 | **Sanitary Sewerage** |  | 2026-04-01 | 2026-11-22 |  |  |  |  |  |  |  |  |  |  |  |  |  |
|  | 2 | **Pipe Work** |  | 2026-04-01 | 2026-05-24 |  |  |  |  |  |  |  |  |  |  |  |  |  |
| CON-LEG101-LR-2800 |  | Excavation for Sanitary Sewerage Network [Local – 01 Segment-03] | 10d | 2026-04-01 A | 2026-04-27 A | CON-LEG101-LR-3600, CON-LEG101-EN-1750, CON-LEG101-EN-1760, CON-LEG101-EN-1770, CON-LEG101-EN-3440 | 100% |  | 2026-05-17 | 2026-06-02 |  |  | Sanitary Sewerage 450mm Depth: 3.51m - 4.50m; Sanitary Sewerage 450mm Depth exceeds 4.50m; Sanitary Sewerage 150mm Diameter Depth: 0.00 m - 1.50 m.; Sanitary Sewerage 150mm Diameter Depth: 1.51m - 2.50m; Sanitary Sewerage 150mm Diameter Depth exceeds 2.50m; Sanitary Sewerage 200mm Depth exceeds 3.50m; Sanitary Sewerage 300mm Depth: 0.00 m - 1.50 m.; Sanitary Sewerage 300mm Depth: 1.51m - 2.50m; Sanitary Sewerage 300mm Depth: 2.51m - 3.50m; Sanitary Sewerage 300mm Depth exceeds 3.50m; Sanitary Sewerage 350mm Depth: 0.00 m - 1.50 m.; Sanitary Sewerage 350mm Depth: 1.51m - 2.50m; Sanitary Sewerage 350mm Depth: 2.51m - 3.50m; Sanitary Sewerage 350mm Depth exceeds 3.50m; Sanitary Sewerage 450mm Depth: 0.00 m - 1.50 m.; Sanitary Sewerage 450mm Depth: 1.51m - 2.50m; Sanitary Sewerage 450mm Depth: 2.51m - 3.50m; Excavator [48 h]; Water Tanker [48 h]; Truck [96 h]; Crane [48 h]; Labor [200 h]; Driver [150 h]; Eq. Operator [100 h]; Sanitary Sewerage 200mm Depth: 0.00 m - 1.50 m. [43.25]; Sanitary Sewerage 200mm Depth: 1.51m - 2.50m [73.23]; Sanitary Sewerage 200mm Depth: 2.51m - 3.50m [36.45] | 55,873 | 55,873 | 1 | L01-03 | A13230 |
| CON-LEG101-LR-2890 |  | Granular bedding for Sanitary Sewerage Network [Local – 01 Segment-03] | 4d | 2026-04-07 A | 2026-04-29 A | CON-LEG101-LR-2800 | 100% |  | 2026-06-03 | 2026-06-08 |  |  | Sanitary Sewerage 450mm Depth: 3.51m - 4.50m; Sanitary Sewerage 450mm Depth exceeds 4.50m; Sanitary Sewerage 150mm Diameter Depth: 0.00 m - 1.50 m.; Sanitary Sewerage 150mm Diameter Depth: 1.51m - 2.50m; Sanitary Sewerage 150mm Diameter Depth exceeds 2.50m; Sanitary Sewerage 200mm Depth exceeds 3.50m; Sanitary Sewerage 300mm Depth: 0.00 m - 1.50 m.; Sanitary Sewerage 300mm Depth: 1.51m - 2.50m; Sanitary Sewerage 300mm Depth: 2.51m - 3.50m; Sanitary Sewerage 300mm Depth exceeds 3.50m; Sanitary Sewerage 350mm Depth: 0.00 m - 1.50 m.; Sanitary Sewerage 350mm Depth: 1.51m - 2.50m; Sanitary Sewerage 350mm Depth: 2.51m - 3.50m; Sanitary Sewerage 350mm Depth exceeds 3.50m; Sanitary Sewerage 450mm Depth: 0.00 m - 1.50 m.; Sanitary Sewerage 450mm Depth: 1.51m - 2.50m; Sanitary Sewerage 450mm Depth: 2.51m - 3.50m; Loader [48 h]; Truck [48 h]; Driver [75 h]; Eq. Operator [75 h]; Sanitary Sewerage 200mm Depth: 0.00 m - 1.50 m. [10.81]; Sanitary Sewerage 200mm Depth: 1.51m - 2.50m [18.31]; Sanitary Sewerage 200mm Depth: 2.51m - 3.50m [9.2] | 14,007.7 | 14,007.7 | 1 | L01-03 | A13330 |
| CON-LEG101-LR-2980 |  | Installation of Pipe for Sanitary Sewerage Network [Local – 01 Segment-03] | 10d | 2026-04-08 A | 2026-04-30 A | CON-LEG101-PR-2560, CON-LEG101-LR-2890, CON-LEG101-PR-1720 | 100% |  | 2026-06-08 | 2026-06-20 |  |  | Sanitary Sewerage 450mm Depth: 3.51m - 4.50m; Sanitary Sewerage 450mm Depth exceeds 4.50m; Sanitary Sewerage 150mm Diameter Depth: 0.00 m - 1.50 m.; Sanitary Sewerage 150mm Diameter Depth: 1.51m - 2.50m; Sanitary Sewerage 150mm Diameter Depth exceeds 2.50m; Sanitary Sewerage 200mm Depth exceeds 3.50m; Sanitary Sewerage 300mm Depth: 0.00 m - 1.50 m.; Sanitary Sewerage 300mm Depth: 1.51m - 2.50m; Sanitary Sewerage 300mm Depth: 2.51m - 3.50m; Sanitary Sewerage 300mm Depth exceeds 3.50m; Sanitary Sewerage 350mm Depth: 0.00 m - 1.50 m.; Sanitary Sewerage 350mm Depth: 1.51m - 2.50m; Sanitary Sewerage 350mm Depth: 2.51m - 3.50m; Sanitary Sewerage 350mm Depth exceeds 3.50m; Sanitary Sewerage 450mm Depth: 0.00 m - 1.50 m.; Sanitary Sewerage 450mm Depth: 1.51m - 2.50m; Sanitary Sewerage 450mm Depth: 2.51m - 3.50m; Excavator [48 h]; Crane [48 h]; Labor [225 h]; Skilled Labor [150 h]; Eq. Operator [150 h]; Plumber [75 h]; Pipe Fitter [75 h]; Sanitary Sewerage 200mm Depth: 0.00 m - 1.50 m. [97.31]; Sanitary Sewerage 200mm Depth: 1.51m - 2.50m [164.77]; Sanitary Sewerage 200mm Depth: 2.51m - 3.50m [82.01] | 125,713.2 | 125,713.2 | 1 | L01-03 | A13430 |
| CON-LEG101-LR-3070 |  | Testing for Sanitary Sewerage Network [Local – 01 Segment-03] | 4d | 2026-04-21 A | 2026-05-19 A | CON-LEG101-LR-2980 | 100% |  | 2026-06-01 | 2026-06-06 |  |  | Sanitary Sewerage 450mm Depth: 3.51m - 4.50m; Sanitary Sewerage 450mm Depth exceeds 4.50m; Sanitary Sewerage 150mm Diameter Depth: 0.00 m - 1.50 m.; Sanitary Sewerage 150mm Diameter Depth: 1.51m - 2.50m; Sanitary Sewerage 150mm Diameter Depth exceeds 2.50m; Sanitary Sewerage 200mm Depth exceeds 3.50m; Sanitary Sewerage 300mm Depth: 0.00 m - 1.50 m.; Sanitary Sewerage 300mm Depth: 1.51m - 2.50m; Sanitary Sewerage 300mm Depth: 2.51m - 3.50m; Sanitary Sewerage 300mm Depth exceeds 3.50m; Sanitary Sewerage 350mm Depth: 0.00 m - 1.50 m.; Sanitary Sewerage 350mm Depth: 1.51m - 2.50m; Sanitary Sewerage 350mm Depth: 2.51m - 3.50m; Sanitary Sewerage 350mm Depth exceeds 3.50m; Sanitary Sewerage 450mm Depth: 0.00 m - 1.50 m.; Sanitary Sewerage 450mm Depth: 1.51m - 2.50m; Sanitary Sewerage 450mm Depth: 2.51m - 3.50m; Labor [300 h]; Skilled Labor [150 h]; Pipe Fitter [150 h]; Sanitary Sewerage 200mm Depth: 0.00 m - 1.50 m. [21.63]; Sanitary Sewerage 200mm Depth: 1.51m - 2.50m [36.62]; Sanitary Sewerage 200mm Depth: 2.51m - 3.50m [18.22] | 27,937.6 | 27,937.6 | 1 | L01-03 | A13530 |
| CON-LEG101-LR-3160 |  | Concrete encasement, pipe dia 200 and 350 mm [Local – 01 Segment-03] | 3d | 2026-04-22 A | 2026-05-20 A | CON-LEG101-LR-3070, CON-LEG101-EN-3450, CON-LEG101-PR-1430 | 100% |  | 2026-06-06 | 2026-06-09 |  |  | Sanitary Sewerage - Concrete encasement pipe dia 200 mm; Sanitary Sewerage Concrete encasement pipe dia 350 mm; Labor [300 h]; Carpenter [75 h]; Mason [150 h] |  |  | 1 | L01-03 | A13670 |
| CON-LEG101-LR-3250 |  | Granular Surround for Sanitary Sewerage Network [Local – 01 Segment-03] | 4d | 2026-04-23 A | 2026-05-20 A | CON-LEG101-LR-3160, CON-LEG101-EN-3450 | 100% |  | 2026-06-09 | 2026-06-14 |  |  | Sanitary Sewerage 450mm Depth: 3.51m - 4.50m; Sanitary Sewerage 450mm Depth exceeds 4.50m; Sanitary Sewerage 150mm Diameter Depth: 0.00 m - 1.50 m.; Sanitary Sewerage 150mm Diameter Depth: 1.51m - 2.50m; Sanitary Sewerage 150mm Diameter Depth exceeds 2.50m; Sanitary Sewerage 200mm Depth exceeds 3.50m; Sanitary Sewerage 300mm Depth: 0.00 m - 1.50 m.; Sanitary Sewerage 300mm Depth: 1.51m - 2.50m; Sanitary Sewerage 300mm Depth: 2.51m - 3.50m; Sanitary Sewerage 300mm Depth exceeds 3.50m; Sanitary Sewerage 350mm Depth: 0.00 m - 1.50 m.; Sanitary Sewerage 350mm Depth: 1.51m - 2.50m; Sanitary Sewerage 350mm Depth: 2.51m - 3.50m; Sanitary Sewerage 350mm Depth exceeds 3.50m; Sanitary Sewerage 450mm Depth: 0.00 m - 1.50 m.; Sanitary Sewerage 450mm Depth: 1.51m - 2.50m; Sanitary Sewerage 450mm Depth: 2.51m - 3.50m; Loader [48 h]; Truck [48 h]; Driver [50 h]; Eq. Operator [50 h]; Sanitary Sewerage 200mm Depth: 0.00 m - 1.50 m. [10.81]; Sanitary Sewerage 200mm Depth: 1.51m - 2.50m [18.31]; Sanitary Sewerage 200mm Depth: 2.51m - 3.50m [9.11] | 13,967.2 | 13,967.2 | 1 | L01-03 | A13760 |
| CON-LEG101-LR-3340 |  | Installation of Micron Marker Magnetic Tape [Local – 01 Segment-03] | 2d | 2026-04-25 A | 2026-05-21 A | CON-LEG101-LR-3250 | 100% |  | 2026-06-08 | 2026-06-10 |  |  | Sanitary Sewerage 450mm Depth: 3.51m - 4.50m; Sanitary Sewerage 450mm Depth exceeds 4.50m; Sanitary Sewerage 150mm Diameter Depth: 0.00 m - 1.50 m.; Sanitary Sewerage 150mm Diameter Depth: 1.51m - 2.50m; Sanitary Sewerage 150mm Diameter Depth exceeds 2.50m; Sanitary Sewerage 200mm Depth exceeds 3.50m; Sanitary Sewerage 300mm Depth: 0.00 m - 1.50 m.; Sanitary Sewerage 300mm Depth: 1.51m - 2.50m; Sanitary Sewerage 300mm Depth: 2.51m - 3.50m; Sanitary Sewerage 300mm Depth exceeds 3.50m; Sanitary Sewerage 350mm Depth: 0.00 m - 1.50 m.; Sanitary Sewerage 350mm Depth: 1.51m - 2.50m; Sanitary Sewerage 350mm Depth: 2.51m - 3.50m; Sanitary Sewerage 350mm Depth exceeds 3.50m; Sanitary Sewerage 450mm Depth: 0.00 m - 1.50 m.; Sanitary Sewerage 450mm Depth: 1.51m - 2.50m; Sanitary Sewerage 450mm Depth: 2.51m - 3.50m; Labor [100 h]; Sanitary Sewerage 200mm Depth: 0.00 m - 1.50 m. [10.81]; Sanitary Sewerage 200mm Depth: 1.51m - 2.50m [18.31]; Sanitary Sewerage 200mm Depth: 2.51m - 3.50m [9.11] | 13,967.2 | 13,967.2 | 1 | L01-03 | A13860 |
| CON-LEG101-LR-3430 |  | Backfilling to Subgrade Elevation [Local – 01 Segment-03] | 6d | 2026-04-26 A | 2026-05-24 A | CON-LEG101-LR-3340, CON-LEG101-EN-3440 | 100% |  | 2026-06-10 | 2026-06-17 |  |  | Sanitary Sewerage 450mm Depth: 3.51m - 4.50m; Sanitary Sewerage 450mm Depth exceeds 4.50m; Sanitary Sewerage 150mm Diameter Depth: 0.00 m - 1.50 m.; Sanitary Sewerage 150mm Diameter Depth: 1.51m - 2.50m; Sanitary Sewerage 150mm Diameter Depth exceeds 2.50m; Sanitary Sewerage 200mm Depth exceeds 3.50m; Sanitary Sewerage 300mm Depth: 0.00 m - 1.50 m.; Sanitary Sewerage 300mm Depth: 1.51m - 2.50m; Sanitary Sewerage 300mm Depth: 2.51m - 3.50m; Sanitary Sewerage 300mm Depth exceeds 3.50m; Sanitary Sewerage 350mm Depth: 0.00 m - 1.50 m.; Sanitary Sewerage 350mm Depth: 1.51m - 2.50m; Sanitary Sewerage 350mm Depth: 2.51m - 3.50m; Sanitary Sewerage 350mm Depth exceeds 3.50m; Sanitary Sewerage 450mm Depth: 0.00 m - 1.50 m.; Sanitary Sewerage 450mm Depth: 1.51m - 2.50m; Sanitary Sewerage 450mm Depth: 2.51m - 3.50m; Excavator [48 h]; Water Tanker [48 h]; Road Roller [48 h]; Bucket [48 h]; Compactor [48 h]; Labor [100 h]; Driver [50 h]; Eq. Operator [200 h]; Sanitary Sewerage 200mm Depth: 0.00 m - 1.50 m. [21.63]; Sanitary Sewerage 200mm Depth: 1.51m - 2.50m [36.62]; Sanitary Sewerage 200mm Depth: 2.51m - 3.50m [18.22] | 27,937.6 | 27,937.6 | 1 | L01-03 | A13960 |
|  | 1 | **Manhole** |  | 2026-04-01 | 2026-11-22 |  |  |  |  |  |  |  |  |  |  |  |  |  |
| CON-LEG101-LR-3520 |  | Installation of Fiberglass Manholes [Local – 01 Segment-03] | 20d | 2026-04-01 A | 2026-11-22 | CON-LEG101-PR-2570, CON-LEG101-LR-2980, CON-LEG101-PR-1750 | 95% | 1d | 2026-06-18 | 2026-07-12 | 55d | 0d | Sanitary Sewerage MH depth 1.51 - 2.50 m with back drop; Sanitary Sewerage MH depth 2.51 - 3.50 m; Sanitary Sewerage MH depth 2.51 - 3.50 m with back drop; Sanitary Sewerage MH depth 3.51 - 4.50 m; Sanitary Sewerage MH depth exceeds 3.50 m with back drop; Sanitary Sewerage MH depth exceeds 4.50 m; Sanitary Sewerage MH depth 0.00 m - 1.50 m. [7.37]; Sanitary Sewerage MH depth 1.51 - 2.50 m [7.37]; Excavator [48 h]; Bucket [48 h]; Compactor [48 h]; Labor [100 h]; Eq. Operator [150 h]; Pipe Fitter [100 h] | 243,210 | 231,049.5 | 0.9 | L01-03 | A14170 |

| ID | WBS | Activity | Duration | Start | Finish | Predecessors | Complete | Remaining | Planned start | Planned finish | Total float | Free float | Resources | Cost | Actual cost | Mapping Sheet Activity ID | % A | JEDDAH 1 - Area Name |
| --- | --- | --- | --- | --- | --- | --- | --- | --- | --- | --- | --- | --- | --- | --- | --- | --- | --- | --- |
|  | 2 | **Local – 02** |  | 2026-02-12 | 2026-11-25 |  |  |  |  |  |  |  |  |  |  |  |  |  |
|  | 1 | **Stormwater Utilities** |  | 2026-02-19 | 2026-11-25 |  |  |  |  |  |  |  |  |  |  |  |  |  |
|  | 2 | **Pipe Work** |  | 2026-02-19 | 2026-04-28 |  |  |  |  |  |  |  |  |  |  |  |  |  |
| CON-LEG101-LR-3610 |  | Excavation for Stormwater Utilities Network [Local – 02 ] | 6d | 2026-02-19 A | 2026-03-28 A | CON-LEG101-LR-3580, CON-LEG101-SD-1000, CON-LEG101-LR-1630, CON-LEG101-EN-1780, CON-LEG101-EN-1790, CON-LEG101-EN-1800, CON-LEG101-EN-3440 | 100% |  | 2026-04-04 | 2026-04-11 |  |  | Stormwater Utilities - GRP Pipes - 400 mm Diameter Depth: 0.00 m - 1.50 m.; Stormwater Utilities - GRP Pipes - 400 mm Depth: 1.51m - 2.50m; Stormwater Utilities - GRP Pipes - 400 mm Depth exceeds 2.50m; Stormwater Utilities - GRP Pipes - 500 mm Depth: 0.00 m - 1.50 m.; Stormwater Utilities - GRP Pipes - 500 mm Depth: 3.51m - 4.50m; Stormwater Utilities - GRP Pipes - 500 mm Depth exceeds 4.50m; Stormwater Utilities - GRP Pipes - 600 mm Depth: 1.51m - 2.50m; Stormwater Utilities - GRP Pipes - 600 mm Depth: 2.51m - 3.50m; Stormwater Utilities - GRP Pipes - 600 mm Depth: 3.51m - 4.50m; Stormwater Utilities - GRP Pipes - 600 mm Depth exceeds 4.50m; Stormwater Utilities - GRP Pipes - 700 mm Depth: 1.51m - 2.50m; Stormwater Utilities - GRP Pipes - 700 mm Depth: 2.51m - 3.50m; Stormwater Utilities - GRP Pipes - 700 mm Depth exceeds 3.50m; Stormwater Utilities - GRP Pipes - 800 mm Depth: 1.51m - 2.50m; Stormwater Utilities - GRP Pipes - 800 mm Depth: 2.51m - 3.50m; Stormwater Utilities - GRP Pipes - 800 mm Depth exceeds 3.50m; Excavator [48 h]; Water Tanker [48 h]; Truck [96 h]; Crane [48 h]; Labor [400 h]; Driver [300 h]; Eq. Operator [200 h]; Stormwater Utilities - GRP Pipes - 500 mm Depth: 1.51m - 2.50m [51.68]; Stormwater Utilities - GRP Pipes - 500 mm Depth: 2.51m - 3.50m [21.55] | 50,832 | 50,832 | A14700 | 1 | L02 |
| CON-LEG101-LR-3710 |  | Granular bedding for Stormwater Utilities Network [Local – 02 ] | 4d | 2026-02-25 A | 2026-04-22 A | CON-LEG101-LR-3610 | 100% |  | 2026-04-12 | 2026-04-16 |  |  | Stormwater Utilities - GRP Pipes - 400 mm Diameter Depth: 0.00 m - 1.50 m.; Stormwater Utilities - GRP Pipes - 400 mm Depth: 1.51m - 2.50m; Stormwater Utilities - GRP Pipes - 400 mm Depth exceeds 2.50m; Stormwater Utilities - GRP Pipes - 500 mm Depth: 0.00 m - 1.50 m.; Stormwater Utilities - GRP Pipes - 500 mm Depth: 3.51m - 4.50m; Stormwater Utilities - GRP Pipes - 500 mm Depth exceeds 4.50m; Stormwater Utilities - GRP Pipes - 600 mm Depth: 1.51m - 2.50m; Stormwater Utilities - GRP Pipes - 600 mm Depth: 2.51m - 3.50m; Stormwater Utilities - GRP Pipes - 600 mm Depth: 3.51m - 4.50m; Stormwater Utilities - GRP Pipes - 600 mm Depth exceeds 4.50m; Stormwater Utilities - GRP Pipes - 700 mm Depth: 1.51m - 2.50m; Stormwater Utilities - GRP Pipes - 700 mm Depth: 2.51m - 3.50m; Stormwater Utilities - GRP Pipes - 700 mm Depth exceeds 3.50m; Stormwater Utilities - GRP Pipes - 800 mm Depth: 1.51m - 2.50m; Stormwater Utilities - GRP Pipes - 800 mm Depth: 2.51m - 3.50m; Stormwater Utilities - GRP Pipes - 800 mm Depth exceeds 3.50m; Loader [48 h]; Truck [48 h]; Driver [100 h]; Eq. Operator [100 h]; Stormwater Utilities - GRP Pipes - 500 mm Depth: 1.51m - 2.50m [12.92]; Stormwater Utilities - GRP Pipes - 500 mm Depth: 2.51m - 3.50m [5.39] | 12,710 | 12,710 | A14810 | 1 | L02 |
| CON-LEG101-LR-3810 |  | Installation of Pipe for Stormwater Utilities Network [Local – 02 ] | 8d | 2026-02-26 A | 2026-04-23 A | CON-LEG101-PR-2100, CON-LEG101-PR-2110, CON-LEG101-LR-3710, CON-LEG101-PR-1780, CON-LEG101-PR-1810 | 100% |  | 2026-04-15 | 2026-04-25 |  |  | Stormwater Utilities - GRP Pipes - 400 mm Diameter Depth: 0.00 m - 1.50 m.; Stormwater Utilities - GRP Pipes - 400 mm Depth: 1.51m - 2.50m; Stormwater Utilities - GRP Pipes - 400 mm Depth exceeds 2.50m; Stormwater Utilities - GRP Pipes - 500 mm Depth: 0.00 m - 1.50 m.; Stormwater Utilities - GRP Pipes - 500 mm Depth: 3.51m - 4.50m; Stormwater Utilities - GRP Pipes - 500 mm Depth exceeds 4.50m; Stormwater Utilities - GRP Pipes - 600 mm Depth: 1.51m - 2.50m; Stormwater Utilities - GRP Pipes - 600 mm Depth: 2.51m - 3.50m; Stormwater Utilities - GRP Pipes - 600 mm Depth: 3.51m - 4.50m; Stormwater Utilities - GRP Pipes - 600 mm Depth exceeds 4.50m; Stormwater Utilities - GRP Pipes - 700 mm Depth: 1.51m - 2.50m; Stormwater Utilities - GRP Pipes - 700 mm Depth: 2.51m - 3.50m; Stormwater Utilities - GRP Pipes - 700 mm Depth exceeds 3.50m; Stormwater Utilities - GRP Pipes - 800 mm Depth: 1.51m - 2.50m; Stormwater Utilities - GRP Pipes - 800 mm Depth: 2.51m - 3.50m; Stormwater Utilities - GRP Pipes - 800 mm Depth exceeds 3.50m; Excavator [48 h]; Crane [48 h]; Labor [150 h]; Skilled Labor [100 h]; Eq. Operator [100 h]; Plumber [50 h]; Pipe Fitter [50 h]; Stormwater Utilities - GRP Pipes - 500 mm Depth: 1.51m - 2.50m [116.29]; Stormwater Utilities - GRP Pipes - 500 mm Depth: 2.51m - 3.50m [48.54] | 114,420.5 | 114,420.5 | A14920 | 1 | L02 |
| CON-LEG101-LR-4010 |  | Granular Surround for Stormwater Utilities Network [Local – 02 ] | 4d | 2026-04-09 A | 2026-04-26 A | CON-LEG101-LR-3910, CON-LEG101-EN-3450 | 100% |  | 2026-05-13 | 2026-05-18 |  |  | Stormwater Utilities - GRP Pipes - 400 mm Diameter Depth: 0.00 m - 1.50 m.; Stormwater Utilities - GRP Pipes - 400 mm Depth: 1.51m - 2.50m; Stormwater Utilities - GRP Pipes - 400 mm Depth exceeds 2.50m; Stormwater Utilities - GRP Pipes - 500 mm Depth: 0.00 m - 1.50 m.; Stormwater Utilities - GRP Pipes - 500 mm Depth: 3.51m - 4.50m; Stormwater Utilities - GRP Pipes - 500 mm Depth exceeds 4.50m; Stormwater Utilities - GRP Pipes - 600 mm Depth: 1.51m - 2.50m; Stormwater Utilities - GRP Pipes - 600 mm Depth: 2.51m - 3.50m; Stormwater Utilities - GRP Pipes - 600 mm Depth: 3.51m - 4.50m; Stormwater Utilities - GRP Pipes - 600 mm Depth exceeds 4.50m; Stormwater Utilities - GRP Pipes - 700 mm Depth: 1.51m - 2.50m; Stormwater Utilities - GRP Pipes - 700 mm Depth: 2.51m - 3.50m; Stormwater Utilities - GRP Pipes - 700 mm Depth exceeds 3.50m; Stormwater Utilities - GRP Pipes - 800 mm Depth: 1.51m - 2.50m; Stormwater Utilities - GRP Pipes - 800 mm Depth: 2.51m - 3.50m; Stormwater Utilities - GRP Pipes - 800 mm Depth exceeds 3.50m; Loader [48 h]; Truck [48 h]; Driver [50 h]; Eq. Operator [50 h]; Stormwater Utilities - GRP Pipes - 500 mm Depth: 1.51m - 2.50m [12.92]; Stormwater Utilities - GRP Pipes - 500 mm Depth: 2.51m - 3.50m [5.39] | 12,710 | 12,710 | A15140 | 1 | L02 |
| CON-LEG101-LR-3910 |  | Testing for Stormwater Utilities Network [Local – 02 ] | 4d | 2026-04-11 A | 2026-04-25 A | CON-LEG101-LR-3810 | 100% |  | 2026-05-09 | 2026-05-13 |  |  | Stormwater Utilities - GRP Pipes - 400 mm Diameter Depth: 0.00 m - 1.50 m.; Stormwater Utilities - GRP Pipes - 400 mm Depth: 1.51m - 2.50m; Stormwater Utilities - GRP Pipes - 400 mm Depth exceeds 2.50m; Stormwater Utilities - GRP Pipes - 500 mm Depth: 0.00 m - 1.50 m.; Stormwater Utilities - GRP Pipes - 500 mm Depth: 3.51m - 4.50m; Stormwater Utilities - GRP Pipes - 500 mm Depth exceeds 4.50m; Stormwater Utilities - GRP Pipes - 600 mm Depth: 1.51m - 2.50m; Stormwater Utilities - GRP Pipes - 600 mm Depth: 2.51m - 3.50m; Stormwater Utilities - GRP Pipes - 600 mm Depth: 3.51m - 4.50m; Stormwater Utilities - GRP Pipes - 600 mm Depth exceeds 4.50m; Stormwater Utilities - GRP Pipes - 700 mm Depth: 1.51m - 2.50m; Stormwater Utilities - GRP Pipes - 700 mm Depth: 2.51m - 3.50m; Stormwater Utilities - GRP Pipes - 700 mm Depth exceeds 3.50m; Stormwater Utilities - GRP Pipes - 800 mm Depth: 1.51m - 2.50m; Stormwater Utilities - GRP Pipes - 800 mm Depth: 2.51m - 3.50m; Stormwater Utilities - GRP Pipes - 800 mm Depth exceeds 3.50m; Labor [200 h]; Skilled Labor [100 h]; Pipe Fitter [100 h]; Stormwater Utilities - GRP Pipes - 500 mm Depth: 1.51m - 2.50m [25.84]; Stormwater Utilities - GRP Pipes - 500 mm Depth: 2.51m - 3.50m [10.79] | 25,428 | 25,428 | A15030 | 1 | L02 |
| CON-LEG101-LR-4120 |  | Installation of Micron Marker Magnetic Tape [Local – 02 ] | 2d | 2026-04-21 A | 2026-04-27 A | CON-LEG101-LR-4010 | 100% |  | 2026-05-24 | 2026-05-26 |  |  | Stormwater Utilities - GRP Pipes - 400 mm Diameter Depth: 0.00 m - 1.50 m.; Stormwater Utilities - GRP Pipes - 400 mm Depth: 1.51m - 2.50m; Stormwater Utilities - GRP Pipes - 400 mm Depth exceeds 2.50m; Stormwater Utilities - GRP Pipes - 500 mm Depth: 0.00 m - 1.50 m.; Stormwater Utilities - GRP Pipes - 500 mm Depth: 3.51m - 4.50m; Stormwater Utilities - GRP Pipes - 500 mm Depth exceeds 4.50m; Stormwater Utilities - GRP Pipes - 600 mm Depth: 1.51m - 2.50m; Stormwater Utilities - GRP Pipes - 600 mm Depth: 2.51m - 3.50m; Stormwater Utilities - GRP Pipes - 600 mm Depth: 3.51m - 4.50m; Stormwater Utilities - GRP Pipes - 600 mm Depth exceeds 4.50m; Stormwater Utilities - GRP Pipes - 700 mm Depth: 1.51m - 2.50m; Stormwater Utilities - GRP Pipes - 700 mm Depth: 2.51m - 3.50m; Stormwater Utilities - GRP Pipes - 700 mm Depth exceeds 3.50m; Stormwater Utilities - GRP Pipes - 800 mm Depth: 1.51m - 2.50m; Stormwater Utilities - GRP Pipes - 800 mm Depth: 2.51m - 3.50m; Stormwater Utilities - GRP Pipes - 800 mm Depth exceeds 3.50m; Labor [100 h]; Stormwater Utilities - GRP Pipes - 500 mm Depth: 1.51m - 2.50m [12.92]; Stormwater Utilities - GRP Pipes - 500 mm Depth: 2.51m - 3.50m [5.39] | 12,710 | 12,710 | A15250 | 1 | L02 |
| CON-LEG101-LR-4230 |  | Backfilling to Subgrade Elevation [Local – 02 ] | 6d | 2026-04-22 A | 2026-04-28 A | CON-LEG101-LR-4120, CON-LEG101-EN-3440 | 100% |  | 2026-05-26 | 2026-06-07 |  |  | Stormwater Utilities - GRP Pipes - 400 mm Diameter Depth: 0.00 m - 1.50 m.; Stormwater Utilities - GRP Pipes - 400 mm Depth: 1.51m - 2.50m; Stormwater Utilities - GRP Pipes - 400 mm Depth exceeds 2.50m; Stormwater Utilities - GRP Pipes - 500 mm Depth: 0.00 m - 1.50 m.; Stormwater Utilities - GRP Pipes - 500 mm Depth: 3.51m - 4.50m; Stormwater Utilities - GRP Pipes - 500 mm Depth exceeds 4.50m; Stormwater Utilities - GRP Pipes - 600 mm Depth: 1.51m - 2.50m; Stormwater Utilities - GRP Pipes - 600 mm Depth: 2.51m - 3.50m; Stormwater Utilities - GRP Pipes - 600 mm Depth: 3.51m - 4.50m; Stormwater Utilities - GRP Pipes - 600 mm Depth exceeds 4.50m; Stormwater Utilities - GRP Pipes - 700 mm Depth: 1.51m - 2.50m; Stormwater Utilities - GRP Pipes - 700 mm Depth: 2.51m - 3.50m; Stormwater Utilities - GRP Pipes - 700 mm Depth exceeds 3.50m; Stormwater Utilities - GRP Pipes - 800 mm Depth: 1.51m - 2.50m; Stormwater Utilities - GRP Pipes - 800 mm Depth: 2.51m - 3.50m; Stormwater Utilities - GRP Pipes - 800 mm Depth exceeds 3.50m; Excavator [48 h]; Water Tanker [48 h]; Road Roller [48 h]; Bucket [48 h]; Compactor [48 h]; Labor [150 h]; Driver [75 h]; Eq. Operator [300 h]; Stormwater Utilities - GRP Pipes - 500 mm Depth: 1.51m - 2.50m [25.84]; Stormwater Utilities - GRP Pipes - 500 mm Depth: 2.51m - 3.50m [10.79] | 25,428 | 25,428 | A15360 | 1 | L02 |
|  | 1 | **Manhole** |  | 2026-02-19 | 2026-11-22 |  |  |  |  |  |  |  |  |  |  |  |  |  |
| CON-LEG101-LR-11140 |  | Excavation of Inlet Manholes [Local – 02 ] | 10d | 2026-02-19 A | 2026-03-28 A | CON-LEG101-LR-3610 | 100% |  | 2026-04-11 | 2026-04-22 |  |  | Stormwater Utilities - (ring 1200 mm internal dia.) MH depth 1.51 - 2.50m [0.9]; Stormwater Utilities - (ring 1200 mm internal dia.) MH depth 2.51 - 3.50m [0.6]; Stormwater Utilities - (ring 1200 mm internal dia.) MH depth 3.51 - 4.50m; Stormwater Utilities - (ring 1200 mm internal dia.) MH depth exceeds 4.50m; Stormwater Utilities - (ring 1500 mm internal dia.) MH depth exceeds 3.50m; Stormwater Utilities - (ring 1500 mm internal dia.) MH depth 1.51 - 2.50m; Stormwater Utilities - (ring 1500 mm internal dia.) MH depth 2.51 - 3.50m | 25,350 | 25,350 |  | 1 | L02 |
| CON-LEG101-LR-11150 |  | PC of Inlet Manholes [Local – 02 ] | 5d | 2026-03-25 A | 2026-03-29 A | CON-LEG101-LR-11140 | 100% |  | 2026-04-29 | 2026-05-05 |  |  | Stormwater Utilities - (ring 1200 mm internal dia.) MH depth 1.51 - 2.50m [0.6]; Stormwater Utilities - (ring 1200 mm internal dia.) MH depth 2.51 - 3.50m [0.4]; Stormwater Utilities - (ring 1200 mm internal dia.) MH depth 3.51 - 4.50m; Stormwater Utilities - (ring 1200 mm internal dia.) MH depth exceeds 4.50m; Stormwater Utilities - (ring 1500 mm internal dia.) MH depth exceeds 3.50m; Stormwater Utilities - (ring 1500 mm internal dia.) MH depth 1.51 - 2.50m; Stormwater Utilities - (ring 1500 mm internal dia.) MH depth 2.51 - 3.50m | 16,900 | 16,900 |  | 1 | L02 |
| CON-LEG101-LR-4350 |  | Installation of Inlet Manholes [Local – 02 ] | 14d | 2026-03-26 A | 2026-06-04 A | CON-LEG101-LR-11150, CON-LEG101-LR-3810, CON-LEG101-PR-1980 | 100% |  | 2026-05-07 | 2026-05-24 |  |  | Stormwater Utilities - (ring 1200 mm internal dia.) MH depth 3.51 - 4.50m; Stormwater Utilities - (ring 1200 mm internal dia.) MH depth exceeds 4.50m; Stormwater Utilities - (ring 1500 mm internal dia.) MH depth exceeds 3.50m; Stormwater Utilities - (ring 1500 mm internal dia.) MH depth 1.51 - 2.50m; Stormwater Utilities - (ring 1500 mm internal dia.) MH depth 2.51 - 3.50m; Stormwater Utilities - (ring 1200 mm internal dia.) MH depth 1.51 - 2.50m [2.71]; Stormwater Utilities - (ring 1200 mm internal dia.) MH depth 2.51 - 3.50m [1.8]; Excavator [48 h]; Bucket [48 h]; Compactor [48 h]; Labor [100 h]; Eq. Operator [150 h]; Pipe Fitter [100 h] | 76,215 | 76,215 | A15590 | 1 | L02 |
| CON-LEG101-LR-11170 |  | Backfilling of Inlet Manholes [Local – 02 ] | 6d | 2026-04-15 A | 2026-06-07 A | CON-LEG101-LR-4350 | 100% |  | 2026-06-04 | 2026-06-10 |  |  | Stormwater Utilities - (ring 1200 mm internal dia.) MH depth 1.51 - 2.50m [1.21]; Stormwater Utilities - (ring 1200 mm internal dia.) MH depth 2.51 - 3.50m [0.8]; Stormwater Utilities - (ring 1200 mm internal dia.) MH depth 3.51 - 4.50m; Stormwater Utilities - (ring 1200 mm internal dia.) MH depth exceeds 4.50m; Stormwater Utilities - (ring 1500 mm internal dia.) MH depth exceeds 3.50m; Stormwater Utilities - (ring 1500 mm internal dia.) MH depth 1.51 - 2.50m; Stormwater Utilities - (ring 1500 mm internal dia.) MH depth 2.51 - 3.50m | 33,965 | 33,965 |  | 1 | L02 |
| CON-LEG101-LR-11180 |  | Finishing and Testing of Inlet Manholes [Local – 02 ] | 10d | 2026-07-05 A | 2026-11-22 | CON-LEG101-LR-11170, CON-LEG101-LR-4350, CON-LEG101-LR-11070 | 95% | 0.5d | 2026-08-10 | 2026-08-22 | 78.2d | 0d | Stormwater Utilities - (ring 1200 mm internal dia.) MH depth 1.51 - 2.50m [0.6]; Stormwater Utilities - (ring 1200 mm internal dia.) MH depth 2.51 - 3.50m [0.4]; Stormwater Utilities - (ring 1200 mm internal dia.) MH depth 3.51 - 4.50m; Stormwater Utilities - (ring 1200 mm internal dia.) MH depth exceeds 4.50m; Stormwater Utilities - (ring 1500 mm internal dia.) MH depth exceeds 3.50m; Stormwater Utilities - (ring 1500 mm internal dia.) MH depth 1.51 - 2.50m; Stormwater Utilities - (ring 1500 mm internal dia.) MH depth 2.51 - 3.50m | 16,900 | 16,055 |  | 0.95 | L02 |
|  | 3 | **Concrete Chambers/Outfalls** |  | 2026-05-02 | 2026-11-25 |  |  |  |  |  |  |  |  |  |  |  |  |  |
| CON-LEG101-LR-11190 |  | Excavation of Concrete chambers [Local – 02 ] | 6d | 2026-05-02 A | 2026-05-10 A | CON-LEG101-LR-4350, CON-LEG101-LR-11180 | 100% |  | 2026-06-24 | 2026-07-01 |  |  | Single Catch basin as per drawings [1]; Curb inlet catch basin [0.62]; Double Catch basin as per drawings | 14,680 | 14,680 |  | 1 | L02 |
| CON-LEG101-LR-11200 |  | PC of Concrete chambers [Local – 02 ] | 2d | 2026-05-03 A | 2026-05-11 A | CON-LEG101-LR-11190 | 100% |  | 2026-07-01 | 2026-07-04 |  |  | Single Catch basin as per drawings [0.66]; Curb inlet catch basin [0.41]; Double Catch basin as per drawings | 9,700 | 9,700 |  | 1 | L02 |
| CON-LEG101-LR-11210 |  | Installation UPVC Pipes to Concrete chambers [Local – 02 ] | 8d | 2026-05-04 A | 2026-05-13 A | CON-LEG101-LR-11190, CON-LEG101-LR-4460 | 100% |  | 2026-07-13 | 2026-07-22 |  |  | Stormwater Utilities - PVC Pipes - 300 mm Diameter Depth: 0.00 m - 1.50 m. [70.02]; Stormwater Utilities - PVC Pipes - 300 mm Diameter Depth: 1.51m - 2.50m [102.58]; Stormwater Utilities - PVC Pipes - 500 mm Depth: 1.51m - 2.50m [31.69]; Stormwater Utilities - PVC Pipes - 300 mm Diameter Depth exceeds 2.50m; Stormwater Utilities - PVC Pipes - 400 mm Diameter Depth: 0.00 m - 1.50 m.; Stormwater Utilities - PVC Pipes - 500 mm Depth: 0.00 m - 1.50 m.; Stormwater Utilities - PVC Pipes - 400 mm Diameter Depth: 1.51m - 2.50m; Stormwater Utilities - PVC Pipes - 400 mm Diameter Depth exceeds 2.50m; Stormwater Utilities - PVC Pipes - 500 mm Depth exceeds 2.50m | 96,985.8 | 96,985.8 |  | 1 | L02 |
| CON-LEG101-LR-4460 |  | Installation of Concrete chambers [Local – 02 ] | 8d | 2026-05-04 A | 2026-05-12 A | CON-LEG101-LR-11200, CON-LEG101-LR-4350, CON-LEG101-LR-3810, CON-LEG101-PR-1990 | 100% |  | 2026-07-04 | 2026-07-13 |  |  | Double Catch basin as per drawings [0.04]; Single Catch basin as per drawings [2.99]; Curb inlet catch basin [1.84]; Excavator [48 h]; Labor [150 h]; Skilled Labor [75 h]; Eq. Operator [75 h]; Pipe Fitter [75 h] | 44,180 | 44,180 | A15740 | 1 | L02 |
| CON-LEG101-LR-11220 |  | Backfilling to Concrete chambers [Local – 02 ] | 6d | 2026-05-06 A | 2026-05-21 A | CON-LEG101-LR-11210, CON-LEG101-LR-4460 | 100% |  | 2026-07-09 | 2026-07-16 |  |  | Single Catch basin as per drawings [1.33]; Curb inlet catch basin [0.82]; Double Catch basin as per drawings | 19,460 | 19,460 |  | 1 | L02 |
| CON-LEG101-LR-11230 |  | FInishing and Testing of Concrete chambers [Local – 02 ] | 8d | 2026-07-05 A | 2026-11-25 | CON-LEG101-LR-11210, CON-LEG101-LR-11220, CON-LEG101-LR-11130 | 95% | 0.4d | 2026-09-06 | 2026-09-15 | 85.3d | 0d | Single Catch basin as per drawings [0.66]; Curb inlet catch basin [0.41]; Double Catch basin as per drawings | 9,700 | 9,215 |  | 0.95 | L02 |
|  | 4 | **Sanitary Sewerage** |  | 2026-02-12 | 2026-11-22 |  |  |  |  |  |  |  |  |  |  |  |  |  |
|  | 2 | **Pipe Work** |  | 2026-02-12 | 2026-06-08 |  |  |  |  |  |  |  |  |  |  |  |  |  |
| CON-LEG101-LR-2810 |  | Excavation for Sanitary Sewerage Network [Local – 02 ] | 10d | 2026-02-12 A | 2026-05-19 A | CON-LEG101-LR-3610, CON-LEG101-EN-1750, CON-LEG101-EN-1760, CON-LEG101-EN-1770, CON-LEG101-EN-3440 | 100% |  | 2026-04-04 | 2026-04-15 |  |  | Sanitary Sewerage 450mm Depth: 3.51m - 4.50m; Sanitary Sewerage 450mm Depth exceeds 4.50m; Sanitary Sewerage 150mm Diameter Depth: 0.00 m - 1.50 m.; Sanitary Sewerage 150mm Diameter Depth: 1.51m - 2.50m; Sanitary Sewerage 150mm Diameter Depth exceeds 2.50m; Sanitary Sewerage 200mm Depth exceeds 3.50m; Sanitary Sewerage 300mm Depth: 0.00 m - 1.50 m.; Sanitary Sewerage 300mm Depth: 1.51m - 2.50m; Sanitary Sewerage 300mm Depth: 2.51m - 3.50m; Sanitary Sewerage 300mm Depth exceeds 3.50m; Sanitary Sewerage 350mm Depth: 0.00 m - 1.50 m.; Sanitary Sewerage 350mm Depth: 1.51m - 2.50m; Sanitary Sewerage 350mm Depth: 2.51m - 3.50m; Sanitary Sewerage 350mm Depth exceeds 3.50m; Sanitary Sewerage 450mm Depth: 0.00 m - 1.50 m.; Sanitary Sewerage 450mm Depth: 1.51m - 2.50m; Sanitary Sewerage 450mm Depth: 2.51m - 3.50m; Excavator [48 h]; Water Tanker [48 h]; Truck [96 h]; Crane [48 h]; Labor [400 h]; Driver [300 h]; Eq. Operator [200 h]; Sanitary Sewerage 200mm Depth: 0.00 m - 1.50 m. [17.3]; Sanitary Sewerage 200mm Depth: 1.51m - 2.50m [29.22]; Sanitary Sewerage 200mm Depth: 2.51m - 3.50m [14.58] | 22,324 | 22,324 | A13240 | 1 | L02 |
| CON-LEG101-LR-2900 |  | Granular bedding for Sanitary Sewerage Network [Local – 02 ] | 4d | 2026-02-19 A | 2026-05-20 A | CON-LEG101-LR-2810 | 100% |  | 2026-04-20 | 2026-04-23 |  |  | Sanitary Sewerage 450mm Depth: 3.51m - 4.50m; Sanitary Sewerage 450mm Depth exceeds 4.50m; Sanitary Sewerage 150mm Diameter Depth: 0.00 m - 1.50 m.; Sanitary Sewerage 150mm Diameter Depth: 1.51m - 2.50m; Sanitary Sewerage 150mm Diameter Depth exceeds 2.50m; Sanitary Sewerage 200mm Depth exceeds 3.50m; Sanitary Sewerage 300mm Depth: 0.00 m - 1.50 m.; Sanitary Sewerage 300mm Depth: 1.51m - 2.50m; Sanitary Sewerage 300mm Depth: 2.51m - 3.50m; Sanitary Sewerage 300mm Depth exceeds 3.50m; Sanitary Sewerage 350mm Depth: 0.00 m - 1.50 m.; Sanitary Sewerage 350mm Depth: 1.51m - 2.50m; Sanitary Sewerage 350mm Depth: 2.51m - 3.50m; Sanitary Sewerage 350mm Depth exceeds 3.50m; Sanitary Sewerage 450mm Depth: 0.00 m - 1.50 m.; Sanitary Sewerage 450mm Depth: 1.51m - 2.50m; Sanitary Sewerage 450mm Depth: 2.51m - 3.50m; Loader [48 h]; Truck [48 h]; Driver [50 h]; Eq. Operator [50 h]; Sanitary Sewerage 200mm Depth: 0.00 m - 1.50 m. [4.33]; Sanitary Sewerage 200mm Depth: 1.51m - 2.50m [7.32]; Sanitary Sewerage 200mm Depth: 2.51m - 3.50m [3.64] | 5,585.6 | 5,585.6 | A13340 | 1 | L02 |
| CON-LEG101-LR-2990 |  | Installation of Pipe for Sanitary Sewerage Network [Local – 02 ] | 10d | 2026-02-21 A | 2026-05-21 A | CON-LEG101-PR-2560, CON-LEG101-LR-2900, CON-LEG101-PR-1720 | 100% |  | 2026-04-20 | 2026-05-02 |  |  | Sanitary Sewerage 450mm Depth: 3.51m - 4.50m; Sanitary Sewerage 450mm Depth exceeds 4.50m; Sanitary Sewerage 150mm Diameter Depth: 0.00 m - 1.50 m.; Sanitary Sewerage 150mm Diameter Depth: 1.51m - 2.50m; Sanitary Sewerage 150mm Diameter Depth exceeds 2.50m; Sanitary Sewerage 200mm Depth exceeds 3.50m; Sanitary Sewerage 300mm Depth: 0.00 m - 1.50 m.; Sanitary Sewerage 300mm Depth: 1.51m - 2.50m; Sanitary Sewerage 300mm Depth: 2.51m - 3.50m; Sanitary Sewerage 300mm Depth exceeds 3.50m; Sanitary Sewerage 350mm Depth: 0.00 m - 1.50 m.; Sanitary Sewerage 350mm Depth: 1.51m - 2.50m; Sanitary Sewerage 350mm Depth: 2.51m - 3.50m; Sanitary Sewerage 350mm Depth exceeds 3.50m; Sanitary Sewerage 450mm Depth: 0.00 m - 1.50 m.; Sanitary Sewerage 450mm Depth: 1.51m - 2.50m; Sanitary Sewerage 450mm Depth: 2.51m - 3.50m; Excavator [48 h]; Crane [48 h]; Labor [150 h]; Skilled Labor [100 h]; Eq. Operator [100 h]; Plumber [50 h]; Pipe Fitter [50 h]; Sanitary Sewerage 200mm Depth: 0.00 m - 1.50 m. [38.93]; Sanitary Sewerage 200mm Depth: 1.51m - 2.50m [65.91]; Sanitary Sewerage 200mm Depth: 2.51m - 3.50m [32.8] | 50,286.1 | 50,286.1 | A13440 | 1 | L02 |
| CON-LEG101-LR-3260 |  | Granular Surround for Sanitary Sewerage Network [Local – 02 ] | 4d | 2026-02-22 A | 2026-05-23 A | CON-LEG101-LR-3170, CON-LEG101-EN-3450 | 100% |  | 2026-05-10 | 2026-05-14 |  |  | Sanitary Sewerage 450mm Depth: 3.51m - 4.50m; Sanitary Sewerage 450mm Depth exceeds 4.50m; Sanitary Sewerage 150mm Diameter Depth: 0.00 m - 1.50 m.; Sanitary Sewerage 150mm Diameter Depth: 1.51m - 2.50m; Sanitary Sewerage 150mm Diameter Depth exceeds 2.50m; Sanitary Sewerage 200mm Depth exceeds 3.50m; Sanitary Sewerage 300mm Depth: 0.00 m - 1.50 m.; Sanitary Sewerage 300mm Depth: 1.51m - 2.50m; Sanitary Sewerage 300mm Depth: 2.51m - 3.50m; Sanitary Sewerage 300mm Depth exceeds 3.50m; Sanitary Sewerage 350mm Depth: 0.00 m - 1.50 m.; Sanitary Sewerage 350mm Depth: 1.51m - 2.50m; Sanitary Sewerage 350mm Depth: 2.51m - 3.50m; Sanitary Sewerage 350mm Depth exceeds 3.50m; Sanitary Sewerage 450mm Depth: 0.00 m - 1.50 m.; Sanitary Sewerage 450mm Depth: 1.51m - 2.50m; Sanitary Sewerage 450mm Depth: 2.51m - 3.50m; Loader [48 h]; Truck [48 h]; Driver [75 h]; Eq. Operator [75 h]; Sanitary Sewerage 200mm Depth: 0.00 m - 1.50 m. [4.33]; Sanitary Sewerage 200mm Depth: 1.51m - 2.50m [7.32]; Sanitary Sewerage 200mm Depth: 2.51m - 3.50m [3.64] | 5,585.6 | 5,585.6 | A13770 | 1 | L02 |
| CON-LEG101-LR-3080 |  | Testing for Sanitary Sewerage Network [Local – 02 ] | 4d | 2026-05-31 A | 2026-05-31 A | CON-LEG101-LR-2990 | 100% |  | 2026-06-23 | 2026-06-27 |  |  | Sanitary Sewerage 450mm Depth: 3.51m - 4.50m; Sanitary Sewerage 450mm Depth exceeds 4.50m; Sanitary Sewerage 150mm Diameter Depth: 0.00 m - 1.50 m.; Sanitary Sewerage 150mm Diameter Depth: 1.51m - 2.50m; Sanitary Sewerage 150mm Diameter Depth exceeds 2.50m; Sanitary Sewerage 200mm Depth exceeds 3.50m; Sanitary Sewerage 300mm Depth: 0.00 m - 1.50 m.; Sanitary Sewerage 300mm Depth: 1.51m - 2.50m; Sanitary Sewerage 300mm Depth: 2.51m - 3.50m; Sanitary Sewerage 300mm Depth exceeds 3.50m; Sanitary Sewerage 350mm Depth: 0.00 m - 1.50 m.; Sanitary Sewerage 350mm Depth: 1.51m - 2.50m; Sanitary Sewerage 350mm Depth: 2.51m - 3.50m; Sanitary Sewerage 350mm Depth exceeds 3.50m; Sanitary Sewerage 450mm Depth: 0.00 m - 1.50 m.; Sanitary Sewerage 450mm Depth: 1.51m - 2.50m; Sanitary Sewerage 450mm Depth: 2.51m - 3.50m; Labor [200 h]; Skilled Labor [100 h]; Pipe Fitter [100 h]; Sanitary Sewerage 200mm Depth: 0.00 m - 1.50 m. [8.65]; Sanitary Sewerage 200mm Depth: 1.51m - 2.50m [14.65]; Sanitary Sewerage 200mm Depth: 2.51m - 3.50m [7.29] | 11,176 | 11,176 | A13540 | 1 | L02 |
| CON-LEG101-LR-3170 |  | Concrete encasement, pipe dia 200 and 350 mm [Local – 02 ] | 3d | 2026-06-01 A | 2026-06-02 A | CON-LEG101-LR-3080, CON-LEG101-EN-3450, CON-LEG101-PR-1430 | 100% |  | 2026-06-28 | 2026-06-30 |  |  | Sanitary Sewerage Concrete encasement pipe dia 350 mm; Sanitary Sewerage - Concrete encasement pipe dia 200 mm [100.9]; Labor [300 h]; Carpenter [75 h]; Mason [150 h] | 22,198 | 22,198 | A13680 | 1 | L02 |
| CON-LEG101-LR-3350 |  | Installation of Micron Marker Magnetic Tape [Local – 02 ] | 2d | 2026-06-03 A | 2026-06-04 A | CON-LEG101-LR-3260 | 100% |  | 2026-07-01 | 2026-07-02 |  |  | Sanitary Sewerage 450mm Depth: 3.51m - 4.50m; Sanitary Sewerage 450mm Depth exceeds 4.50m; Sanitary Sewerage 150mm Diameter Depth: 0.00 m - 1.50 m.; Sanitary Sewerage 150mm Diameter Depth: 1.51m - 2.50m; Sanitary Sewerage 150mm Diameter Depth exceeds 2.50m; Sanitary Sewerage 200mm Depth exceeds 3.50m; Sanitary Sewerage 300mm Depth: 0.00 m - 1.50 m.; Sanitary Sewerage 300mm Depth: 1.51m - 2.50m; Sanitary Sewerage 300mm Depth: 2.51m - 3.50m; Sanitary Sewerage 300mm Depth exceeds 3.50m; Sanitary Sewerage 350mm Depth: 0.00 m - 1.50 m.; Sanitary Sewerage 350mm Depth: 1.51m - 2.50m; Sanitary Sewerage 350mm Depth: 2.51m - 3.50m; Sanitary Sewerage 350mm Depth exceeds 3.50m; Sanitary Sewerage 450mm Depth: 0.00 m - 1.50 m.; Sanitary Sewerage 450mm Depth: 1.51m - 2.50m; Sanitary Sewerage 450mm Depth: 2.51m - 3.50m; Labor [150 h]; Sanitary Sewerage 200mm Depth: 0.00 m - 1.50 m. [4.33]; Sanitary Sewerage 200mm Depth: 1.51m - 2.50m [7.32]; Sanitary Sewerage 200mm Depth: 2.51m - 3.50m [3.64] | 5,585.6 | 5,585.6 | A13870 | 1 | L02 |
| CON-LEG101-LR-3440 |  | Backfilling to Subgrade Elevation [Local – 02 ] | 6d | 2026-06-06 A | 2026-06-08 A | CON-LEG101-LR-3350, CON-LEG101-EN-3440 | 100% |  | 2026-07-04 | 2026-07-09 |  |  | Sanitary Sewerage 450mm Depth: 3.51m - 4.50m; Sanitary Sewerage 450mm Depth exceeds 4.50m; Sanitary Sewerage 150mm Diameter Depth: 0.00 m - 1.50 m.; Sanitary Sewerage 150mm Diameter Depth: 1.51m - 2.50m; Sanitary Sewerage 150mm Diameter Depth exceeds 2.50m; Sanitary Sewerage 200mm Depth exceeds 3.50m; Sanitary Sewerage 300mm Depth: 0.00 m - 1.50 m.; Sanitary Sewerage 300mm Depth: 1.51m - 2.50m; Sanitary Sewerage 300mm Depth: 2.51m - 3.50m; Sanitary Sewerage 300mm Depth exceeds 3.50m; Sanitary Sewerage 350mm Depth: 0.00 m - 1.50 m.; Sanitary Sewerage 350mm Depth: 1.51m - 2.50m; Sanitary Sewerage 350mm Depth: 2.51m - 3.50m; Sanitary Sewerage 350mm Depth exceeds 3.50m; Sanitary Sewerage 450mm Depth: 0.00 m - 1.50 m.; Sanitary Sewerage 450mm Depth: 1.51m - 2.50m; Sanitary Sewerage 450mm Depth: 2.51m - 3.50m; Excavator [48 h]; Water Tanker [48 h]; Road Roller [48 h]; Bucket [48 h]; Compactor [48 h]; Labor [150 h]; Driver [75 h]; Eq. Operator [300 h]; Sanitary Sewerage 200mm Depth: 0.00 m - 1.50 m. [8.65]; Sanitary Sewerage 200mm Depth: 1.51m - 2.50m [14.65]; Sanitary Sewerage 200mm Depth: 2.51m - 3.50m [7.29] | 11,176 | 11,176 | A13970 | 1 | L02 |

| ID | WBS | Activity | Duration | Start | Finish | Predecessors | Complete | Remaining | Planned start | Planned finish | Total float | Free float | Resources | Cost | Actual cost | Mapping Sheet Activity ID | % A | JEDDAH 1 - Area Name |
| --- | --- | --- | --- | --- | --- | --- | --- | --- | --- | --- | --- | --- | --- | --- | --- | --- | --- | --- |
|  | 1 | **Manhole** |  | 2026-02-12 | 2026-11-22 |  |  |  |  |  |  |  |  |  |  |  |  |  |
| CON-LEG101-LR-3530 |  | Installation of Fiberglass Manholes [Local – 02 ] | 20d | 2026-02-12 A | 2026-11-22 | CON-LEG101-PR-2570, CON-LEG101-LR-2990, CON-LEG101-PR-1750 | 95% | 1d | 2026-05-02 | 2026-05-25 | -52.24d | 0d | Sanitary Sewerage MH depth 0.00 m - 1.50 m.; Sanitary Sewerage MH depth 1.51 - 2.50 m with back drop; Sanitary Sewerage MH depth 2.51 - 3.50 m with back drop; Sanitary Sewerage MH depth 3.51 - 4.50 m; Sanitary Sewerage MH depth exceeds 3.50 m with back drop; Sanitary Sewerage MH depth exceeds 4.50 m; Sanitary Sewerage MH depth 1.51 - 2.50 m [7.37]; Sanitary Sewerage MH depth 2.51 - 3.50 m [3.35]; Excavator [48 h]; Bucket [48 h]; Compactor [48 h]; Labor [100 h]; Eq. Operator [150 h]; Pipe Fitter [100 h] | 185,590 | 176,310.5 | A14180 | 0.95 | L02 |
|  | 3 | **Local – 03** |  | 2026-02-14 | 2026-11-28 |  |  |  |  |  |  |  |  |  |  |  |  |  |
|  | 1 | **Stormwater Utilities** |  | 2026-02-14 | 2026-11-28 |  |  |  |  |  |  |  |  |  |  |  |  |  |
|  | 2 | **Pipe Work** |  | 2026-02-14 | 2026-05-24 |  |  |  |  |  |  |  |  |  |  |  |  |  |
| CON-LEG101-LR-3620 |  | Excavation for Stormwater Utilities Network [Local – 03 ] | 10d | 2026-02-14 A | 2026-04-30 A | CON-LEG101-LR-3610, CON-LEG101-SD-1000, CON-LEG101-LR-1740, CON-LEG101-EN-1780, CON-LEG101-EN-1790, CON-LEG101-EN-1800, CON-LEG101-EN-3440 | 100% |  | 2026-04-04 | 2026-04-15 |  |  | Stormwater Utilities - GRP Pipes - 400 mm Diameter Depth: 0.00 m - 1.50 m.; Stormwater Utilities - GRP Pipes - 400 mm Depth exceeds 2.50m; Stormwater Utilities - GRP Pipes - 500 mm Depth: 0.00 m - 1.50 m.; Stormwater Utilities - GRP Pipes - 500 mm Depth: 1.51m - 2.50m; Stormwater Utilities - GRP Pipes - 500 mm Depth: 2.51m - 3.50m; Stormwater Utilities - GRP Pipes - 500 mm Depth: 3.51m - 4.50m; Stormwater Utilities - GRP Pipes - 500 mm Depth exceeds 4.50m; Stormwater Utilities - GRP Pipes - 600 mm Depth: 1.51m - 2.50m; Stormwater Utilities - GRP Pipes - 600 mm Depth: 2.51m - 3.50m; Stormwater Utilities - GRP Pipes - 600 mm Depth: 3.51m - 4.50m; Stormwater Utilities - GRP Pipes - 600 mm Depth exceeds 4.50m; Stormwater Utilities - GRP Pipes - 700 mm Depth: 1.51m - 2.50m; Stormwater Utilities - GRP Pipes - 700 mm Depth: 2.51m - 3.50m; Stormwater Utilities - GRP Pipes - 700 mm Depth exceeds 3.50m; Stormwater Utilities - GRP Pipes - 800 mm Depth: 1.51m - 2.50m; Stormwater Utilities - GRP Pipes - 800 mm Depth: 2.51m - 3.50m; Stormwater Utilities - GRP Pipes - 800 mm Depth exceeds 3.50m; Excavator [48 h]; Water Tanker [48 h]; Truck [96 h]; Crane [48 h]; Labor [400 h]; Driver [300 h]; Eq. Operator [200 h]; Stormwater Utilities - GRP Pipes - 400 mm Depth: 1.51m - 2.50m [9.57] | 5,742 | 5,742 | A14710 | 1 | L03 |
| CON-LEG101-LR-3720 |  | Granular bedding for Stormwater Utilities Network [Local – 03 ] | 3d | 2026-05-02 A | 2026-05-04 A | CON-LEG101-LR-3620 | 100% |  | 2026-06-03 | 2026-06-06 |  |  | Stormwater Utilities - GRP Pipes - 400 mm Diameter Depth: 0.00 m - 1.50 m.; Stormwater Utilities - GRP Pipes - 400 mm Depth exceeds 2.50m; Stormwater Utilities - GRP Pipes - 500 mm Depth: 0.00 m - 1.50 m.; Stormwater Utilities - GRP Pipes - 500 mm Depth: 1.51m - 2.50m; Stormwater Utilities - GRP Pipes - 500 mm Depth: 2.51m - 3.50m; Stormwater Utilities - GRP Pipes - 500 mm Depth: 3.51m - 4.50m; Stormwater Utilities - GRP Pipes - 500 mm Depth exceeds 4.50m; Stormwater Utilities - GRP Pipes - 600 mm Depth: 1.51m - 2.50m; Stormwater Utilities - GRP Pipes - 600 mm Depth: 2.51m - 3.50m; Stormwater Utilities - GRP Pipes - 600 mm Depth: 3.51m - 4.50m; Stormwater Utilities - GRP Pipes - 600 mm Depth exceeds 4.50m; Stormwater Utilities - GRP Pipes - 700 mm Depth: 1.51m - 2.50m; Stormwater Utilities - GRP Pipes - 700 mm Depth: 2.51m - 3.50m; Stormwater Utilities - GRP Pipes - 700 mm Depth exceeds 3.50m; Stormwater Utilities - GRP Pipes - 800 mm Depth: 1.51m - 2.50m; Stormwater Utilities - GRP Pipes - 800 mm Depth: 2.51m - 3.50m; Stormwater Utilities - GRP Pipes - 800 mm Depth exceeds 3.50m; Loader [48 h]; Truck [48 h]; Driver [50 h]; Eq. Operator [50 h]; Stormwater Utilities - GRP Pipes - 400 mm Depth: 1.51m - 2.50m [2.39] | 1,434 | 1,434 | A14820 | 1 | L03 |
| CON-LEG101-LR-3820 |  | Installation of Pipe for Stormwater Utilities Network [Local – 03 ] | 8d | 2026-05-05 A | 2026-05-09 A | CON-LEG101-PR-2100, CON-LEG101-PR-2110, CON-LEG101-LR-3720, CON-LEG101-PR-1780, CON-LEG101-PR-1810 | 100% |  | 2026-06-07 | 2026-06-15 |  |  | Stormwater Utilities - GRP Pipes - 400 mm Diameter Depth: 0.00 m - 1.50 m.; Stormwater Utilities - GRP Pipes - 400 mm Depth exceeds 2.50m; Stormwater Utilities - GRP Pipes - 500 mm Depth: 0.00 m - 1.50 m.; Stormwater Utilities - GRP Pipes - 500 mm Depth: 1.51m - 2.50m; Stormwater Utilities - GRP Pipes - 500 mm Depth: 2.51m - 3.50m; Stormwater Utilities - GRP Pipes - 500 mm Depth: 3.51m - 4.50m; Stormwater Utilities - GRP Pipes - 500 mm Depth exceeds 4.50m; Stormwater Utilities - GRP Pipes - 600 mm Depth: 1.51m - 2.50m; Stormwater Utilities - GRP Pipes - 600 mm Depth: 2.51m - 3.50m; Stormwater Utilities - GRP Pipes - 600 mm Depth: 3.51m - 4.50m; Stormwater Utilities - GRP Pipes - 600 mm Depth exceeds 4.50m; Stormwater Utilities - GRP Pipes - 700 mm Depth: 1.51m - 2.50m; Stormwater Utilities - GRP Pipes - 700 mm Depth: 2.51m - 3.50m; Stormwater Utilities - GRP Pipes - 700 mm Depth exceeds 3.50m; Stormwater Utilities - GRP Pipes - 800 mm Depth: 1.51m - 2.50m; Stormwater Utilities - GRP Pipes - 800 mm Depth: 2.51m - 3.50m; Stormwater Utilities - GRP Pipes - 800 mm Depth exceeds 3.50m; Excavator [48 h]; Crane [48 h]; Labor [150 h]; Skilled Labor [100 h]; Eq. Operator [100 h]; Plumber [50 h]; Pipe Fitter [50 h]; Stormwater Utilities - GRP Pipes - 400 mm Depth: 1.51m - 2.50m [21.53] | 12,918 | 12,918 | A14930 | 1 | L03 |
| CON-LEG101-LR-3920 |  | Testing for Stormwater Utilities Network [Local – 03 ] | 3d | 2026-05-19 A | 2026-05-19 A | CON-LEG101-LR-3820 | 100% |  | 2026-06-13 | 2026-06-15 |  |  | Stormwater Utilities - GRP Pipes - 400 mm Diameter Depth: 0.00 m - 1.50 m.; Stormwater Utilities - GRP Pipes - 400 mm Depth exceeds 2.50m; Stormwater Utilities - GRP Pipes - 500 mm Depth: 0.00 m - 1.50 m.; Stormwater Utilities - GRP Pipes - 500 mm Depth: 1.51m - 2.50m; Stormwater Utilities - GRP Pipes - 500 mm Depth: 2.51m - 3.50m; Stormwater Utilities - GRP Pipes - 500 mm Depth: 3.51m - 4.50m; Stormwater Utilities - GRP Pipes - 500 mm Depth exceeds 4.50m; Stormwater Utilities - GRP Pipes - 600 mm Depth: 1.51m - 2.50m; Stormwater Utilities - GRP Pipes - 600 mm Depth: 2.51m - 3.50m; Stormwater Utilities - GRP Pipes - 600 mm Depth: 3.51m - 4.50m; Stormwater Utilities - GRP Pipes - 600 mm Depth exceeds 4.50m; Stormwater Utilities - GRP Pipes - 700 mm Depth: 1.51m - 2.50m; Stormwater Utilities - GRP Pipes - 700 mm Depth: 2.51m - 3.50m; Stormwater Utilities - GRP Pipes - 700 mm Depth exceeds 3.50m; Stormwater Utilities - GRP Pipes - 800 mm Depth: 1.51m - 2.50m; Stormwater Utilities - GRP Pipes - 800 mm Depth: 2.51m - 3.50m; Stormwater Utilities - GRP Pipes - 800 mm Depth exceeds 3.50m; Labor [200 h]; Skilled Labor [100 h]; Pipe Fitter [100 h]; Stormwater Utilities - GRP Pipes - 400 mm Depth: 1.51m - 2.50m [4.78] | 2,868 | 2,868 | A15040 | 1 | L03 |
| CON-LEG101-LR-4020 |  | Granular Surround for Stormwater Utilities Network [Local – 03 ] | 3d | 2026-05-20 A | 2026-05-20 A | CON-LEG101-LR-3920, CON-LEG101-EN-3450 | 100% |  | 2026-06-16 | 2026-06-18 |  |  | Stormwater Utilities - GRP Pipes - 400 mm Diameter Depth: 0.00 m - 1.50 m.; Stormwater Utilities - GRP Pipes - 400 mm Depth exceeds 2.50m; Stormwater Utilities - GRP Pipes - 500 mm Depth: 0.00 m - 1.50 m.; Stormwater Utilities - GRP Pipes - 500 mm Depth: 1.51m - 2.50m; Stormwater Utilities - GRP Pipes - 500 mm Depth: 2.51m - 3.50m; Stormwater Utilities - GRP Pipes - 500 mm Depth: 3.51m - 4.50m; Stormwater Utilities - GRP Pipes - 500 mm Depth exceeds 4.50m; Stormwater Utilities - GRP Pipes - 600 mm Depth: 1.51m - 2.50m; Stormwater Utilities - GRP Pipes - 600 mm Depth: 2.51m - 3.50m; Stormwater Utilities - GRP Pipes - 600 mm Depth: 3.51m - 4.50m; Stormwater Utilities - GRP Pipes - 600 mm Depth exceeds 4.50m; Stormwater Utilities - GRP Pipes - 700 mm Depth: 1.51m - 2.50m; Stormwater Utilities - GRP Pipes - 700 mm Depth: 2.51m - 3.50m; Stormwater Utilities - GRP Pipes - 700 mm Depth exceeds 3.50m; Stormwater Utilities - GRP Pipes - 800 mm Depth: 1.51m - 2.50m; Stormwater Utilities - GRP Pipes - 800 mm Depth: 2.51m - 3.50m; Stormwater Utilities - GRP Pipes - 800 mm Depth exceeds 3.50m; Loader [48 h]; Truck [48 h]; Driver [50 h]; Eq. Operator [50 h]; Stormwater Utilities - GRP Pipes - 400 mm Depth: 1.51m - 2.50m [2.39] | 1,434 | 1,434 | A15150 | 1 | L03 |
| CON-LEG101-LR-4130 |  | Installation of Micron Marker Magnetic Tape [Local – 03 ] | 2d | 2026-05-21 A | 2026-05-21 A | CON-LEG101-LR-4020 | 100% |  | 2026-06-20 | 2026-06-21 |  |  | Stormwater Utilities - GRP Pipes - 400 mm Diameter Depth: 0.00 m - 1.50 m.; Stormwater Utilities - GRP Pipes - 400 mm Depth exceeds 2.50m; Stormwater Utilities - GRP Pipes - 500 mm Depth: 0.00 m - 1.50 m.; Stormwater Utilities - GRP Pipes - 500 mm Depth: 1.51m - 2.50m; Stormwater Utilities - GRP Pipes - 500 mm Depth: 2.51m - 3.50m; Stormwater Utilities - GRP Pipes - 500 mm Depth: 3.51m - 4.50m; Stormwater Utilities - GRP Pipes - 500 mm Depth exceeds 4.50m; Stormwater Utilities - GRP Pipes - 600 mm Depth: 1.51m - 2.50m; Stormwater Utilities - GRP Pipes - 600 mm Depth: 2.51m - 3.50m; Stormwater Utilities - GRP Pipes - 600 mm Depth: 3.51m - 4.50m; Stormwater Utilities - GRP Pipes - 600 mm Depth exceeds 4.50m; Stormwater Utilities - GRP Pipes - 700 mm Depth: 1.51m - 2.50m; Stormwater Utilities - GRP Pipes - 700 mm Depth: 2.51m - 3.50m; Stormwater Utilities - GRP Pipes - 700 mm Depth exceeds 3.50m; Stormwater Utilities - GRP Pipes - 800 mm Depth: 1.51m - 2.50m; Stormwater Utilities - GRP Pipes - 800 mm Depth: 2.51m - 3.50m; Stormwater Utilities - GRP Pipes - 800 mm Depth exceeds 3.50m; Labor [150 h]; Stormwater Utilities - GRP Pipes - 400 mm Depth: 1.51m - 2.50m [2.39] | 1,434 | 1,434 | A15260 | 1 | L03 |
| CON-LEG101-LR-4240 |  | Backfilling to Subgrade Elevation [Local – 03 ] | 6d | 2026-05-23 A | 2026-05-24 A | CON-LEG101-LR-4130, CON-LEG101-EN-3440 | 100% |  | 2026-06-22 | 2026-06-28 |  |  | Stormwater Utilities - GRP Pipes - 400 mm Diameter Depth: 0.00 m - 1.50 m.; Stormwater Utilities - GRP Pipes - 400 mm Depth: 1.51m - 2.50m [4.78]; Stormwater Utilities - GRP Pipes - 400 mm Depth exceeds 2.50m; Stormwater Utilities - GRP Pipes - 500 mm Depth: 0.00 m - 1.50 m.; Stormwater Utilities - GRP Pipes - 500 mm Depth: 1.51m - 2.50m; Stormwater Utilities - GRP Pipes - 500 mm Depth: 2.51m - 3.50m; Stormwater Utilities - GRP Pipes - 500 mm Depth: 3.51m - 4.50m; Stormwater Utilities - GRP Pipes - 500 mm Depth exceeds 4.50m; Stormwater Utilities - GRP Pipes - 600 mm Depth: 1.51m - 2.50m; Stormwater Utilities - GRP Pipes - 600 mm Depth: 2.51m - 3.50m; Stormwater Utilities - GRP Pipes - 600 mm Depth: 3.51m - 4.50m; Stormwater Utilities - GRP Pipes - 600 mm Depth exceeds 4.50m; Stormwater Utilities - GRP Pipes - 700 mm Depth: 1.51m - 2.50m; Stormwater Utilities - GRP Pipes - 700 mm Depth: 2.51m - 3.50m; Stormwater Utilities - GRP Pipes - 700 mm Depth exceeds 3.50m; Stormwater Utilities - GRP Pipes - 800 mm Depth: 1.51m - 2.50m; Stormwater Utilities - GRP Pipes - 800 mm Depth: 2.51m - 3.50m; Stormwater Utilities - GRP Pipes - 800 mm Depth exceeds 3.50m; Excavator [48 h]; Water Tanker [48 h]; Road Roller [48 h]; Bucket [48 h]; Compactor [48 h]; Labor [150 h]; Driver [75 h]; Eq. Operator [300 h] | 2,868 | 2,868 | A15370 | 1 | L03 |
|  | 1 | **Manhole** |  | 2026-02-14 | 2026-11-25 |  |  |  |  |  |  |  |  |  |  |  |  |  |
| CON-LEG101-LR-11240 |  | Excavation of Inlet Manholes [Local – 03 ] | 6d | 2026-02-14 A | 2026-04-30 A | CON-LEG101-LR-3620 | 100% |  | 2026-04-15 | 2026-04-22 |  |  | Stormwater Utilities - (ring 1200 mm internal dia.) MH depth 1.51 - 2.50m [0.1]; Stormwater Utilities - (ring 1200 mm internal dia.) MH depth 2.51 - 3.50m [0.09]; Stormwater Utilities - (ring 1200 mm internal dia.) MH depth 3.51 - 4.50m; Stormwater Utilities - (ring 1200 mm internal dia.) MH depth exceeds 4.50m; Stormwater Utilities - (ring 1500 mm internal dia.) MH depth exceeds 3.50m; Stormwater Utilities - (ring 1500 mm internal dia.) MH depth 1.51 - 2.50m; Stormwater Utilities - (ring 1500 mm internal dia.) MH depth 2.51 - 3.50m | 3,225 | 3,225 |  | 1 | L03 |
| CON-LEG101-LR-11250 |  | PC of Inlet Manholes [Local – 03 ] | 3d | 2026-05-02 A | 2026-05-04 A | CON-LEG101-LR-11240 | 100% |  | 2026-06-07 | 2026-06-10 |  |  | Stormwater Utilities - (ring 1200 mm internal dia.) MH depth 1.51 - 2.50m [0.07]; Stormwater Utilities - (ring 1200 mm internal dia.) MH depth 2.51 - 3.50m [0.06]; Stormwater Utilities - (ring 1200 mm internal dia.) MH depth 3.51 - 4.50m; Stormwater Utilities - (ring 1200 mm internal dia.) MH depth exceeds 4.50m; Stormwater Utilities - (ring 1500 mm internal dia.) MH depth exceeds 3.50m; Stormwater Utilities - (ring 1500 mm internal dia.) MH depth 1.51 - 2.50m; Stormwater Utilities - (ring 1500 mm internal dia.) MH depth 2.51 - 3.50m | 2,205 | 2,205 |  | 1 | L03 |
| CON-LEG101-LR-11260 |  | Installation of Inlet Manholes [Local – 03 ] | 14d | 2026-05-05 A | 2026-06-01 A | CON-LEG101-LR-11250 | 100% |  | 2026-06-10 | 2026-06-27 |  |  | Stormwater Utilities - (ring 1200 mm internal dia.) MH depth 1.51 - 2.50m [0.3]; Stormwater Utilities - (ring 1200 mm internal dia.) MH depth 2.51 - 3.50m [0.25]; Excavator [48 h]; Bucket [48 h]; Compactor [48 h]; Labor [100 h]; Eq. Operator [150 h]; Pipe Fitter [100 h]; Stormwater Utilities - (ring 1200 mm internal dia.) MH depth 3.51 - 4.50m; Stormwater Utilities - (ring 1200 mm internal dia.) MH depth exceeds 4.50m; Stormwater Utilities - (ring 1500 mm internal dia.) MH depth exceeds 3.50m; Stormwater Utilities - (ring 1500 mm internal dia.) MH depth 1.51 - 2.50m; Stormwater Utilities - (ring 1500 mm internal dia.) MH depth 2.51 - 3.50m | 9,325 | 9,325 | A15590 | 1 | L03 |
| CON-LEG101-LR-11270 |  | Backfilling of Inlet Manholes [Local – 03 ] | 6d | 2026-06-03 A | 2026-06-04 A | CON-LEG101-LR-11260 | 100% |  | 2026-06-23 | 2026-06-29 |  |  | Stormwater Utilities - (ring 1200 mm internal dia.) MH depth 1.51 - 2.50m [0.13]; Stormwater Utilities - (ring 1200 mm internal dia.) MH depth 2.51 - 3.50m [0.11]; Stormwater Utilities - (ring 1200 mm internal dia.) MH depth 3.51 - 4.50m; Stormwater Utilities - (ring 1200 mm internal dia.) MH depth exceeds 4.50m; Stormwater Utilities - (ring 1500 mm internal dia.) MH depth exceeds 3.50m; Stormwater Utilities - (ring 1500 mm internal dia.) MH depth 1.51 - 2.50m; Stormwater Utilities - (ring 1500 mm internal dia.) MH depth 2.51 - 3.50m | 4,070 | 4,070 |  | 1 | L03 |
| CON-LEG101-LR-11280 |  | Finishing and Testing of Inlet Manholes [Local – 03 ] | 20d | 2026-10-14 A | 2026-11-25 | CON-LEG101-LR-11270, CON-LEG101-LR-11260, CON-LEG101-LR-11180, CON-LEG101-LR-11220 | 85% | 3d | 2026-11-01 | 2026-11-24 | 83.9d | 21.2d | Stormwater Utilities - (ring 1200 mm internal dia.) MH depth 1.51 - 2.50m [0.07]; Stormwater Utilities - (ring 1200 mm internal dia.) MH depth 2.51 - 3.50m [0.06]; Stormwater Utilities - (ring 1200 mm internal dia.) MH depth 3.51 - 4.50m; Stormwater Utilities - (ring 1200 mm internal dia.) MH depth exceeds 4.50m; Stormwater Utilities - (ring 1500 mm internal dia.) MH depth exceeds 3.50m; Stormwater Utilities - (ring 1500 mm internal dia.) MH depth 1.51 - 2.50m; Stormwater Utilities - (ring 1500 mm internal dia.) MH depth 2.51 - 3.50m | 2,205 | 1,874.25 |  |  | L03 |
|  | 3 | **Concrete Chambers/Outfalls** |  | 2026-06-15 | 2026-11-28 |  |  |  |  |  |  |  |  |  |  |  |  |  |
| CON-LEG101-LR-11290 |  | Excavation of Concrete chambers [Local – 03 ] | 12d | 2026-06-15 A | 2026-06-24 A | CON-LEG101-LR-11260 | 100% |  | 2026-07-06 | 2026-07-19 |  |  | Single Catch basin as per drawings [0.3]; Double Catch basin as per drawings [0.32]; Curb inlet catch basin [0.18] | 8,160 | 8,160 |  | 1 | L03 |
| CON-LEG101-LR-11300 |  | PC of Concrete chambers [Local – 03 ] | 5d | 2026-06-16 A | 2026-06-25 A | CON-LEG101-LR-11290 | 100% |  | 2026-07-20 | 2026-07-25 |  |  | Single Catch basin as per drawings [0.2]; Double Catch basin as per drawings [0.21]; Curb inlet catch basin [0.12] | 5,400 | 5,400 |  | 1 | L03 |
| CON-LEG101-LR-11310 |  | Installation of Concrete chambers [Local – 03 ] | 20d | 2026-06-17 A | 2026-06-25 A | CON-LEG101-LR-11300 | 100% |  | 2026-07-26 | 2026-08-17 |  |  | Single Catch basin as per drawings [0.9]; Double Catch basin as per drawings [0.96]; Curb inlet catch basin [0.55]; Excavator [48 h]; Labor [100 h]; Skilled Labor [50 h]; Eq. Operator [50 h]; Pipe Fitter [50 h] | 24,620 | 24,620 | A15740 | 1 | L03 |
| CON-LEG101-LR-11320 |  | Installation UPVC Pipes to Concrete chambers [Local – 03 ] | 10d | 2026-06-18 A | 2026-06-27 A | CON-LEG101-LR-11290, CON-LEG101-LR-11310 | 100% |  | 2026-08-18 | 2026-08-29 |  |  | Stormwater Utilities - PVC Pipes - 300 mm Diameter Depth: 0.00 m - 1.50 m. [49.01]; Stormwater Utilities - PVC Pipes - 300 mm Diameter Depth: 1.51m - 2.50m [71.8]; Stormwater Utilities - PVC Pipes - 500 mm Depth: 1.51m - 2.50m [22.18]; Stormwater Utilities - PVC Pipes - 300 mm Diameter Depth exceeds 2.50m; Stormwater Utilities - PVC Pipes - 400 mm Diameter Depth: 0.00 m - 1.50 m.; Stormwater Utilities - PVC Pipes - 500 mm Depth: 0.00 m - 1.50 m.; Stormwater Utilities - PVC Pipes - 400 mm Diameter Depth: 1.51m - 2.50m; Stormwater Utilities - PVC Pipes - 400 mm Diameter Depth exceeds 2.50m; Stormwater Utilities - PVC Pipes - 500 mm Depth exceeds 2.50m | 67,883.6 | 67,883.6 |  | 1 | L03 |
| CON-LEG101-LR-11330 |  | Backfilling to Concrete chambers [Local – 03 ] | 6d | 2026-06-20 A | 2026-06-30 A | CON-LEG101-LR-11320, CON-LEG101-LR-11310 | 100% |  | 2026-08-30 | 2026-09-05 |  |  | Single Catch basin as per drawings [0.4]; Double Catch basin as per drawings [0.43]; Curb inlet catch basin [0.25] | 11,060 | 11,060 |  | 1 | L03 |
| CON-LEG101-LR-11340 |  | FInishing and Testing of Concrete chambers [Local – 03 ] | 11d | 2026-10-14 A | 2026-11-28 | CON-LEG101-LR-11320, CON-LEG101-LR-11330, CON-LEG101-LR-11230 | 85% | 1.65d | 2026-11-07 | 2026-11-19 | 85.3d | 43.65d | Single Catch basin as per drawings [0.2]; Double Catch basin as per drawings [0.21]; Curb inlet catch basin [0.12] | 5,400 | 4,590 |  |  | L03 |

| ID | WBS | Activity | Duration | Start | Finish | Predecessors | Complete | Remaining | Planned start | Planned finish | Total float | Free float | Resources | Cost | Actual cost | Mapping Sheet Activity ID | % A | JEDDAH 1 - Area Name |
| --- | --- | --- | --- | --- | --- | --- | --- | --- | --- | --- | --- | --- | --- | --- | --- | --- | --- | --- |
|  | 4 | **Local – 04** |  | 2026-01-28 | 2027-01-31 |  |  |  |  |  |  |  |  |  |  |  |  |  |
|  | 1 | **Stormwater Utilities** |  | 2026-01-28 | 2027-01-31 |  |  |  |  |  |  |  |  |  |  |  |  |  |
|  | 2 | **Pipe Work** |  | 2026-01-28 | 2026-12-29 |  |  |  |  |  |  |  |  |  |  |  |  |  |
| CON-LEG101-LR-3630 |  | Excavation for Stormwater Utilities Network [Local – 04 ] | 7d | 2026-01-28 A | 2026-01-29 A | CON-LEG101-LR-1340, CON-LEG101-SD-1000, CON-LEG101-LR-1800, CON-LEG101-EN-1780, CON-LEG101-EN-1790, CON-LEG101-EN-1800, CON-LEG101-EN-3440 | 100% |  | 2026-07-18 | 2026-07-25 |  |  | Stormwater Utilities - GRP Pipes - 400 mm Diameter Depth: 0.00 m - 1.50 m.; Stormwater Utilities - GRP Pipes - 400 mm Depth: 1.51m - 2.50m; Stormwater Utilities - GRP Pipes - 400 mm Depth exceeds 2.50m; Stormwater Utilities - GRP Pipes - 500 mm Depth: 0.00 m - 1.50 m.; Stormwater Utilities - GRP Pipes - 500 mm Depth: 3.51m - 4.50m; Stormwater Utilities - GRP Pipes - 500 mm Depth exceeds 4.50m; Stormwater Utilities - GRP Pipes - 600 mm Depth: 1.51m - 2.50m; Stormwater Utilities - GRP Pipes - 600 mm Depth: 2.51m - 3.50m; Stormwater Utilities - GRP Pipes - 600 mm Depth: 3.51m - 4.50m; Stormwater Utilities - GRP Pipes - 600 mm Depth exceeds 4.50m; Stormwater Utilities - GRP Pipes - 700 mm Depth: 1.51m - 2.50m; Stormwater Utilities - GRP Pipes - 700 mm Depth: 2.51m - 3.50m; Stormwater Utilities - GRP Pipes - 700 mm Depth exceeds 3.50m; Stormwater Utilities - GRP Pipes - 800 mm Depth: 1.51m - 2.50m; Stormwater Utilities - GRP Pipes - 800 mm Depth: 2.51m - 3.50m; Stormwater Utilities - GRP Pipes - 800 mm Depth exceeds 3.50m; Excavator [48 h]; Water Tanker [48 h]; Truck [96 h]; Crane [48 h]; Labor [200 h]; Driver [150 h]; Eq. Operator [100 h]; Stormwater Utilities - GRP Pipes - 500 mm Depth: 1.51m - 2.50m [9.23]; Stormwater Utilities - GRP Pipes - 500 mm Depth: 2.51m - 3.50m [3.85] | 9,079.5 | 9,079.5 | A14720 | 1 | L04 |
| CON-LEG101-LR-3730 |  | Granular bedding for Stormwater Utilities Network [Local – 04 ] | 4d | 2026-01-31 A | 2026-01-31 A | CON-LEG101-LR-3630 | 100% |  | 2026-07-26 | 2026-07-29 |  |  | Stormwater Utilities - GRP Pipes - 400 mm Diameter Depth: 0.00 m - 1.50 m.; Stormwater Utilities - GRP Pipes - 400 mm Depth: 1.51m - 2.50m; Stormwater Utilities - GRP Pipes - 400 mm Depth exceeds 2.50m; Stormwater Utilities - GRP Pipes - 500 mm Depth: 0.00 m - 1.50 m.; Stormwater Utilities - GRP Pipes - 500 mm Depth: 3.51m - 4.50m; Stormwater Utilities - GRP Pipes - 500 mm Depth exceeds 4.50m; Stormwater Utilities - GRP Pipes - 600 mm Depth: 1.51m - 2.50m; Stormwater Utilities - GRP Pipes - 600 mm Depth: 2.51m - 3.50m; Stormwater Utilities - GRP Pipes - 600 mm Depth: 3.51m - 4.50m; Stormwater Utilities - GRP Pipes - 600 mm Depth exceeds 4.50m; Stormwater Utilities - GRP Pipes - 700 mm Depth: 1.51m - 2.50m; Stormwater Utilities - GRP Pipes - 700 mm Depth: 2.51m - 3.50m; Stormwater Utilities - GRP Pipes - 700 mm Depth exceeds 3.50m; Stormwater Utilities - GRP Pipes - 800 mm Depth: 1.51m - 2.50m; Stormwater Utilities - GRP Pipes - 800 mm Depth: 2.51m - 3.50m; Stormwater Utilities - GRP Pipes - 800 mm Depth exceeds 3.50m; Loader [48 h]; Truck [48 h]; Driver [50 h]; Eq. Operator [50 h]; Stormwater Utilities - GRP Pipes - 500 mm Depth: 1.51m - 2.50m [2.3]; Stormwater Utilities - GRP Pipes - 500 mm Depth: 2.51m - 3.50m [0.96] | 2,263 | 2,263 | A14830 | 1 | L04 |
| CON-LEG101-LR-3830 |  | Installation of Pipe for Stormwater Utilities Network [Local – 04 ] | 8d | 2026-02-01 A | 2026-02-02 A | CON-LEG101-PR-2100, CON-LEG101-PR-2110, CON-LEG101-LR-3730, CON-LEG101-PR-1780, CON-LEG101-PR-1810 | 100% |  | 2026-07-30 | 2026-08-08 |  |  | Stormwater Utilities - GRP Pipes - 400 mm Diameter Depth: 0.00 m - 1.50 m.; Stormwater Utilities - GRP Pipes - 400 mm Depth: 1.51m - 2.50m; Stormwater Utilities - GRP Pipes - 400 mm Depth exceeds 2.50m; Stormwater Utilities - GRP Pipes - 500 mm Depth: 0.00 m - 1.50 m.; Stormwater Utilities - GRP Pipes - 500 mm Depth: 3.51m - 4.50m; Stormwater Utilities - GRP Pipes - 500 mm Depth exceeds 4.50m; Stormwater Utilities - GRP Pipes - 600 mm Depth: 1.51m - 2.50m; Stormwater Utilities - GRP Pipes - 600 mm Depth: 2.51m - 3.50m; Stormwater Utilities - GRP Pipes - 600 mm Depth: 3.51m - 4.50m; Stormwater Utilities - GRP Pipes - 600 mm Depth exceeds 4.50m; Stormwater Utilities - GRP Pipes - 700 mm Depth: 1.51m - 2.50m; Stormwater Utilities - GRP Pipes - 700 mm Depth: 2.51m - 3.50m; Stormwater Utilities - GRP Pipes - 700 mm Depth exceeds 3.50m; Stormwater Utilities - GRP Pipes - 800 mm Depth: 1.51m - 2.50m; Stormwater Utilities - GRP Pipes - 800 mm Depth: 2.51m - 3.50m; Stormwater Utilities - GRP Pipes - 800 mm Depth exceeds 3.50m; Excavator [48 h]; Crane [48 h]; Labor [150 h]; Skilled Labor [100 h]; Eq. Operator [100 h]; Plumber [50 h]; Pipe Fitter [50 h]; Stormwater Utilities - GRP Pipes - 500 mm Depth: 1.51m - 2.50m [20.76]; Stormwater Utilities - GRP Pipes - 500 mm Depth: 2.51m - 3.50m [8.67] | 20,430 | 20,430 | A14940 | 1 | L04 |
| CON-LEG101-LR-4030 |  | Granular Surround for Stormwater Utilities Network [Local – 04 ] | 8d | 2026-02-01 A | 2026-02-02 A | CON-LEG101-LR-3930, CON-LEG101-EN-3450 | 100% |  | 2026-08-23 | 2026-08-31 |  |  | Stormwater Utilities - GRP Pipes - 400 mm Diameter Depth: 0.00 m - 1.50 m.; Stormwater Utilities - GRP Pipes - 400 mm Depth: 1.51m - 2.50m; Stormwater Utilities - GRP Pipes - 400 mm Depth exceeds 2.50m; Stormwater Utilities - GRP Pipes - 500 mm Depth: 0.00 m - 1.50 m.; Stormwater Utilities - GRP Pipes - 500 mm Depth: 3.51m - 4.50m; Stormwater Utilities - GRP Pipes - 500 mm Depth exceeds 4.50m; Stormwater Utilities - GRP Pipes - 600 mm Depth: 1.51m - 2.50m; Stormwater Utilities - GRP Pipes - 600 mm Depth: 2.51m - 3.50m; Stormwater Utilities - GRP Pipes - 600 mm Depth: 3.51m - 4.50m; Stormwater Utilities - GRP Pipes - 600 mm Depth exceeds 4.50m; Stormwater Utilities - GRP Pipes - 700 mm Depth: 1.51m - 2.50m; Stormwater Utilities - GRP Pipes - 700 mm Depth: 2.51m - 3.50m; Stormwater Utilities - GRP Pipes - 700 mm Depth exceeds 3.50m; Stormwater Utilities - GRP Pipes - 800 mm Depth: 1.51m - 2.50m; Stormwater Utilities - GRP Pipes - 800 mm Depth: 2.51m - 3.50m; Stormwater Utilities - GRP Pipes - 800 mm Depth exceeds 3.50m; Loader [48 h]; Truck [48 h]; Driver [50 h]; Eq. Operator [50 h]; Stormwater Utilities - GRP Pipes - 500 mm Depth: 1.51m - 2.50m [2.3]; Stormwater Utilities - GRP Pipes - 500 mm Depth: 2.51m - 3.50m [0.96] | 2,263 | 2,263 | A15160 | 1 | L04 |
| CON-LEG101-LR-3930 |  | Testing for Stormwater Utilities Network [Local – 04 ] | 12d | 2026-12-09 | 2026-12-22 | CON-LEG101-LR-3830 |  |  |  |  | -66.24d | 0d | Stormwater Utilities - GRP Pipes - 400 mm Diameter Depth: 0.00 m - 1.50 m.; Stormwater Utilities - GRP Pipes - 400 mm Depth: 1.51m - 2.50m; Stormwater Utilities - GRP Pipes - 400 mm Depth exceeds 2.50m; Stormwater Utilities - GRP Pipes - 500 mm Depth: 0.00 m - 1.50 m.; Stormwater Utilities - GRP Pipes - 500 mm Depth: 3.51m - 4.50m; Stormwater Utilities - GRP Pipes - 500 mm Depth exceeds 4.50m; Stormwater Utilities - GRP Pipes - 600 mm Depth: 1.51m - 2.50m; Stormwater Utilities - GRP Pipes - 600 mm Depth: 2.51m - 3.50m; Stormwater Utilities - GRP Pipes - 600 mm Depth: 3.51m - 4.50m; Stormwater Utilities - GRP Pipes - 600 mm Depth exceeds 4.50m; Stormwater Utilities - GRP Pipes - 700 mm Depth: 1.51m - 2.50m; Stormwater Utilities - GRP Pipes - 700 mm Depth: 2.51m - 3.50m; Stormwater Utilities - GRP Pipes - 700 mm Depth exceeds 3.50m; Stormwater Utilities - GRP Pipes - 800 mm Depth: 1.51m - 2.50m; Stormwater Utilities - GRP Pipes - 800 mm Depth: 2.51m - 3.50m; Stormwater Utilities - GRP Pipes - 800 mm Depth exceeds 3.50m; Labor [200 h]; Skilled Labor [100 h]; Pipe Fitter [100 h]; Stormwater Utilities - GRP Pipes - 500 mm Depth: 1.51m - 2.50m [4.62]; Stormwater Utilities - GRP Pipes - 500 mm Depth: 2.51m - 3.50m [1.93] | 4,547 |  | A15050 |  | L04 |
| CON-LEG101-LR-4140 |  | Installation of Micron Marker Magnetic Tape [Local – 04 ] | 2d | 2026-12-23 | 2026-12-24 | CON-LEG101-LR-4030, CON-LEG101-LR-11330 |  |  |  |  | -66.24d | 0d | Stormwater Utilities - GRP Pipes - 400 mm Diameter Depth: 0.00 m - 1.50 m.; Stormwater Utilities - GRP Pipes - 400 mm Depth: 1.51m - 2.50m; Stormwater Utilities - GRP Pipes - 400 mm Depth exceeds 2.50m; Stormwater Utilities - GRP Pipes - 500 mm Depth: 0.00 m - 1.50 m.; Stormwater Utilities - GRP Pipes - 500 mm Depth: 3.51m - 4.50m; Stormwater Utilities - GRP Pipes - 500 mm Depth exceeds 4.50m; Stormwater Utilities - GRP Pipes - 600 mm Depth: 1.51m - 2.50m; Stormwater Utilities - GRP Pipes - 600 mm Depth: 2.51m - 3.50m; Stormwater Utilities - GRP Pipes - 600 mm Depth: 3.51m - 4.50m; Stormwater Utilities - GRP Pipes - 600 mm Depth exceeds 4.50m; Stormwater Utilities - GRP Pipes - 700 mm Depth: 1.51m - 2.50m; Stormwater Utilities - GRP Pipes - 700 mm Depth: 2.51m - 3.50m; Stormwater Utilities - GRP Pipes - 700 mm Depth exceeds 3.50m; Stormwater Utilities - GRP Pipes - 800 mm Depth: 1.51m - 2.50m; Stormwater Utilities - GRP Pipes - 800 mm Depth: 2.51m - 3.50m; Stormwater Utilities - GRP Pipes - 800 mm Depth exceeds 3.50m; Labor [100 h]; Stormwater Utilities - GRP Pipes - 500 mm Depth: 1.51m - 2.50m [2.3]; Stormwater Utilities - GRP Pipes - 500 mm Depth: 2.51m - 3.50m [0.96] | 2,263 |  | A15270 |  | L04 |
| CON-LEG101-LR-4250 |  | Backfilling to Subgrade Elevation [Local – 04 ] | 4d | 2026-12-26 | 2026-12-29 | CON-LEG101-LR-4140, CON-LEG101-EN-3440 |  |  |  |  | -66.24d | 0d | Stormwater Utilities - GRP Pipes - 400 mm Diameter Depth: 0.00 m - 1.50 m.; Stormwater Utilities - GRP Pipes - 400 mm Depth: 1.51m - 2.50m; Stormwater Utilities - GRP Pipes - 400 mm Depth exceeds 2.50m; Stormwater Utilities - GRP Pipes - 500 mm Depth: 0.00 m - 1.50 m.; Stormwater Utilities - GRP Pipes - 500 mm Depth: 3.51m - 4.50m; Stormwater Utilities - GRP Pipes - 500 mm Depth exceeds 4.50m; Stormwater Utilities - GRP Pipes - 600 mm Depth: 1.51m - 2.50m; Stormwater Utilities - GRP Pipes - 600 mm Depth: 2.51m - 3.50m; Stormwater Utilities - GRP Pipes - 600 mm Depth: 3.51m - 4.50m; Stormwater Utilities - GRP Pipes - 600 mm Depth exceeds 4.50m; Stormwater Utilities - GRP Pipes - 700 mm Depth: 1.51m - 2.50m; Stormwater Utilities - GRP Pipes - 700 mm Depth: 2.51m - 3.50m; Stormwater Utilities - GRP Pipes - 700 mm Depth exceeds 3.50m; Stormwater Utilities - GRP Pipes - 800 mm Depth: 1.51m - 2.50m; Stormwater Utilities - GRP Pipes - 800 mm Depth: 2.51m - 3.50m; Stormwater Utilities - GRP Pipes - 800 mm Depth exceeds 3.50m; Excavator [24 h]; Water Tanker [32 h]; Road Roller [48 h]; Bucket [48 h]; Compactor [48 h]; Labor [100 h]; Driver [50 h]; Eq. Operator [200 h]; Stormwater Utilities - GRP Pipes - 500 mm Depth: 1.51m - 2.50m [4.62]; Stormwater Utilities - GRP Pipes - 500 mm Depth: 2.51m - 3.50m [1.93] | 4,547 |  | A15380 |  | L04 |
|  | 1 | **Manhole** |  | 2026-01-28 | 2027-01-06 |  |  |  |  |  |  |  |  |  |  |  |  |  |
| CON-LEG101-LR-11350 |  | Excavation of Inlet Manholes [Local – 04 ] | 10d | 2026-01-28 A | 2026-01-29 A | CON-LEG101-LR-3630 | 100% |  | 2026-07-26 | 2026-08-05 |  |  | Stormwater Utilities - (ring 1200 mm internal dia.) MH depth 1.51 - 2.50m [0.2]; Stormwater Utilities - (ring 1200 mm internal dia.) MH depth 2.51 - 3.50m; Stormwater Utilities - (ring 1200 mm internal dia.) MH depth 3.51 - 4.50m; Stormwater Utilities - (ring 1200 mm internal dia.) MH depth exceeds 4.50m; Stormwater Utilities - (ring 1500 mm internal dia.) MH depth exceeds 3.50m; Stormwater Utilities - (ring 1500 mm internal dia.) MH depth 1.51 - 2.50m; Stormwater Utilities - (ring 1500 mm internal dia.) MH depth 2.51 - 3.50m | 3,300 | 3,300 |  | 1 | L04 |
| CON-LEG101-LR-11360 |  | PC of Inlet Manholes [Local – 04 ] | 3d | 2026-03-01 A | 2026-03-01 A | CON-LEG101-LR-11350 | 100% |  | 2026-05-24 | 2026-06-01 |  |  | Stormwater Utilities - (ring 1200 mm internal dia.) MH depth 1.51 - 2.50m [0.13]; Stormwater Utilities - (ring 1200 mm internal dia.) MH depth 2.51 - 3.50m; Stormwater Utilities - (ring 1200 mm internal dia.) MH depth 3.51 - 4.50m; Stormwater Utilities - (ring 1200 mm internal dia.) MH depth exceeds 4.50m; Stormwater Utilities - (ring 1500 mm internal dia.) MH depth exceeds 3.50m; Stormwater Utilities - (ring 1500 mm internal dia.) MH depth 1.51 - 2.50m; Stormwater Utilities - (ring 1500 mm internal dia.) MH depth 2.51 - 3.50m | 2,145 | 2,145 |  | 1 | L04 |
| CON-LEG101-LR-4370 |  | Installation of Inlet Manholes [Local – 04 ] | 10d | 2026-03-07 A | 2026-12-13 | CON-LEG101-LR-11360, CON-LEG101-LR-3830, CON-LEG101-PR-1980 | 60% | 4d | 2026-06-01 | 2026-06-13 | -58.24d | 0d | Stormwater Utilities - (ring 1200 mm internal dia.) MH depth 2.51 - 3.50m; Stormwater Utilities - (ring 1200 mm internal dia.) MH depth 3.51 - 4.50m; Stormwater Utilities - (ring 1200 mm internal dia.) MH depth exceeds 4.50m; Stormwater Utilities - (ring 1500 mm internal dia.) MH depth exceeds 3.50m; Stormwater Utilities - (ring 1500 mm internal dia.) MH depth 1.51 - 2.50m; Stormwater Utilities - (ring 1500 mm internal dia.) MH depth 2.51 - 3.50m; Stormwater Utilities - (ring 1200 mm internal dia.) MH depth 1.51 - 2.50m [0.6]; Excavator [48 h]; Bucket [48 h]; Compactor [48 h]; Labor [100 h]; Eq. Operator [150 h]; Pipe Fitter [100 h] | 9,900 | 5,940 | A15600 | 0.6 | L04 |
| CON-LEG101-LR-11380 |  | Backfilling of Inlet Manholes [Local – 04 ] | 6d | 2026-12-14 | 2026-12-20 | CON-LEG101-LR-4370 |  |  |  |  | -58.24d | 0d | Stormwater Utilities - (ring 1200 mm internal dia.) MH depth 1.51 - 2.50m [0.27]; Stormwater Utilities - (ring 1200 mm internal dia.) MH depth 2.51 - 3.50m; Stormwater Utilities - (ring 1200 mm internal dia.) MH depth 3.51 - 4.50m; Stormwater Utilities - (ring 1200 mm internal dia.) MH depth exceeds 4.50m; Stormwater Utilities - (ring 1500 mm internal dia.) MH depth exceeds 3.50m; Stormwater Utilities - (ring 1500 mm internal dia.) MH depth 1.51 - 2.50m; Stormwater Utilities - (ring 1500 mm internal dia.) MH depth 2.51 - 3.50m | 4,455 |  |  |  | L04 |
| CON-LEG101-LR-11390 |  | Finishing and Testing of Inlet Manholes [Local – 04 ] | 15d | 2026-12-21 | 2027-01-06 | CON-LEG101-LR-11380, CON-LEG101-LR-4370, CON-LEG101-LR-11280 |  |  |  |  | 62.7d | 0d | Stormwater Utilities - (ring 1200 mm internal dia.) MH depth 1.51 - 2.50m [0.13]; Stormwater Utilities - (ring 1200 mm internal dia.) MH depth 2.51 - 3.50m; Stormwater Utilities - (ring 1200 mm internal dia.) MH depth 3.51 - 4.50m; Stormwater Utilities - (ring 1200 mm internal dia.) MH depth exceeds 4.50m; Stormwater Utilities - (ring 1500 mm internal dia.) MH depth exceeds 3.50m; Stormwater Utilities - (ring 1500 mm internal dia.) MH depth 1.51 - 2.50m; Stormwater Utilities - (ring 1500 mm internal dia.) MH depth 2.51 - 3.50m | 2,145 |  |  |  | L04 |
|  | 3 | **Concrete Chambers/Outfalls** |  | 2026-12-14 | 2027-01-31 |  |  |  |  |  |  |  |  |  |  |  |  |  |
| CON-LEG101-LR-11400 |  | Excavation of Concrete chambers [Local – 04 ] | 6d | 2026-12-14 | 2026-12-20 | CON-LEG101-LR-4370 |  |  |  |  | 18d | 0d | Single Catch basin as per drawings [0.3]; Double Catch basin as per drawings [0.26]; Curb inlet catch basin [0.18] | 7,440 |  |  |  | L04 |
| CON-LEG101-LR-11410 |  | PC of Concrete chambers [Local – 04 ] | 2d | 2026-12-21 | 2026-12-22 | CON-LEG101-LR-11400 |  |  |  |  | 18d | 0d | Single Catch basin as per drawings [0.2]; Double Catch basin as per drawings [0.17]; Curb inlet catch basin [0.12] | 4,920 |  |  |  | L04 |
| CON-LEG101-LR-4470 |  | Installation of Concrete chambers [Local – 04 ] | 10d | 2026-12-23 | 2027-01-03 | CON-LEG101-LR-11410, CON-LEG101-LR-4370, CON-LEG101-LR-3830, CON-LEG101-PR-1990, CON-LEG101-LR-11380 |  |  |  |  | 18d | 0d | Single Catch basin as per drawings [0.9]; Double Catch basin as per drawings [0.78]; Curb inlet catch basin [0.55]; Excavator [20 h]; Labor [100 h]; Skilled Labor [50 h]; Eq. Operator [50 h]; Pipe Fitter [50 h] | 22,460 |  | A15750 |  | L04 |
| CON-LEG101-LR-11420 |  | Installation UPVC Pipes to Concrete chambers [Local – 04 ] | 6d | 2027-01-04 | 2027-01-10 | CON-LEG101-LR-11400, CON-LEG101-LR-4470 |  |  |  |  | 18d | 0d | Stormwater Utilities - PVC Pipes - 300 mm Diameter Depth: 0.00 m - 1.50 m. [49.01]; Stormwater Utilities - PVC Pipes - 300 mm Diameter Depth: 1.51m - 2.50m [71.8]; Stormwater Utilities - PVC Pipes - 500 mm Depth: 1.51m - 2.50m [22.18]; Stormwater Utilities - PVC Pipes - 300 mm Diameter Depth exceeds 2.50m; Stormwater Utilities - PVC Pipes - 400 mm Diameter Depth: 0.00 m - 1.50 m.; Stormwater Utilities - PVC Pipes - 500 mm Depth: 0.00 m - 1.50 m.; Stormwater Utilities - PVC Pipes - 400 mm Diameter Depth: 1.51m - 2.50m; Stormwater Utilities - PVC Pipes - 400 mm Diameter Depth exceeds 2.50m; Stormwater Utilities - PVC Pipes - 500 mm Depth exceeds 2.50m | 67,883.6 |  |  |  | L04 |
| CON-LEG101-LR-11430 |  | Backfilling to Concrete chambers [Local – 04 ] | 6d | 2027-01-11 | 2027-01-17 | CON-LEG101-LR-11420, CON-LEG101-LR-4470 |  |  |  |  | 18d | 0d | Single Catch basin as per drawings [0.4]; Double Catch basin as per drawings [0.35]; Curb inlet catch basin [0.25] | 10,100 |  |  |  | L04 |
| CON-LEG101-LR-11440 |  | FInishing and Testing of Concrete chambers [Local – 04 ] | 12d | 2027-01-18 | 2027-01-31 | CON-LEG101-LR-11420, CON-LEG101-LR-11430, CON-LEG101-LR-11340 |  |  |  |  | 41.65d | 0d | Single Catch basin as per drawings [0.2]; Double Catch basin as per drawings [0.17]; Curb inlet catch basin [0.12] | 4,920 |  |  |  | L04 |
|  | 4 | **Sanitary Sewerage** |  | 2026-01-28 | 2026-12-21 |  |  |  |  |  |  |  |  |  |  |  |  |  |
|  | 2 | **Pipe Work** |  | 2026-01-28 | 2026-12-21 |  |  |  |  |  |  |  |  |  |  |  |  |  |
| CON-LEG101-LR-2820 |  | Excavation for Sanitary Sewerage Network [Local – 04 ] | 10d | 2026-01-28 A | 2026-01-29 A | CON-LEG101-LR-3630, CON-LEG101-EN-1750, CON-LEG101-EN-1760, CON-LEG101-EN-1770, CON-LEG101-EN-3440 | 100% |  | 2026-07-26 | 2026-08-05 |  |  | Sanitary Sewerage 450mm Depth: 3.51m - 4.50m; Sanitary Sewerage 450mm Depth exceeds 4.50m; Sanitary Sewerage 200mm Depth exceeds 3.50m; Sanitary Sewerage 300mm Depth: 0.00 m - 1.50 m.; Sanitary Sewerage 300mm Depth: 1.51m - 2.50m; Sanitary Sewerage 300mm Depth: 2.51m - 3.50m; Sanitary Sewerage 300mm Depth exceeds 3.50m; Sanitary Sewerage 350mm Depth: 0.00 m - 1.50 m.; Sanitary Sewerage 350mm Depth: 1.51m - 2.50m; Sanitary Sewerage 350mm Depth: 2.51m - 3.50m; Sanitary Sewerage 350mm Depth exceeds 3.50m; Sanitary Sewerage 450mm Depth: 0.00 m - 1.50 m.; Sanitary Sewerage 450mm Depth: 1.51m - 2.50m; Sanitary Sewerage 450mm Depth: 2.51m - 3.50m; Excavator [48 h]; Water Tanker [48 h]; Truck [96 h]; Crane [48 h]; Labor [200 h]; Driver [150 h]; Eq. Operator [100 h]; Sanitary Sewerage 150mm Diameter Depth: 0.00 m - 1.50 m. [1.34]; Sanitary Sewerage 150mm Diameter Depth: 1.51m - 2.50m [13.4]; Sanitary Sewerage 150mm Diameter Depth exceeds 2.50m [1.34]; Sanitary Sewerage 200mm Depth: 0.00 m - 1.50 m. [3.46]; Sanitary Sewerage 200mm Depth: 1.51m - 2.50m [5.86]; Sanitary Sewerage 200mm Depth: 2.51m - 3.50m [2.91] | 10,631.7 | 10,631.7 | A13250 | 1 | L04 |
| CON-LEG101-LR-2910 |  | Granular bedding for Sanitary Sewerage Network [Local – 04 ] | 2d | 2026-01-30 A | 2026-01-31 A | CON-LEG101-LR-2820 | 100% |  | 2026-08-06 | 2026-08-08 |  |  | Sanitary Sewerage 450mm Depth: 3.51m - 4.50m; Sanitary Sewerage 450mm Depth exceeds 4.50m; Sanitary Sewerage 200mm Depth exceeds 3.50m; Sanitary Sewerage 300mm Depth: 0.00 m - 1.50 m.; Sanitary Sewerage 300mm Depth: 1.51m - 2.50m; Sanitary Sewerage 300mm Depth: 2.51m - 3.50m; Sanitary Sewerage 300mm Depth exceeds 3.50m; Sanitary Sewerage 350mm Depth: 0.00 m - 1.50 m.; Sanitary Sewerage 350mm Depth: 1.51m - 2.50m; Sanitary Sewerage 350mm Depth: 2.51m - 3.50m; Sanitary Sewerage 350mm Depth exceeds 3.50m; Sanitary Sewerage 450mm Depth: 0.00 m - 1.50 m.; Sanitary Sewerage 450mm Depth: 1.51m - 2.50m; Sanitary Sewerage 450mm Depth: 2.51m - 3.50m; Loader [48 h]; Truck [48 h]; Driver [50 h]; Eq. Operator [50 h]; Sanitary Sewerage 150mm Diameter Depth: 0.00 m - 1.50 m. [0.3]; Sanitary Sewerage 150mm Diameter Depth: 1.51m - 2.50m [3.35]; Sanitary Sewerage 150mm Diameter Depth exceeds 2.50m [0.3]; Sanitary Sewerage 200mm Depth: 0.00 m - 1.50 m. [0.86]; Sanitary Sewerage 200mm Depth: 1.51m - 2.50m [1.47]; Sanitary Sewerage 200mm Depth: 2.51m - 3.50m [0.73] | 2,620.7 | 2,620.7 | A13350 | 1 | L04 |
| CON-LEG101-LR-3000 |  | Installation of Pipe for Sanitary Sewerage Network [Local – 04 ] | 12d | 2026-02-01 A | 2026-02-02 A | CON-LEG101-PR-2560, CON-LEG101-LR-2910, CON-LEG101-PR-1720 | 100% |  | 2026-08-09 | 2026-08-22 |  |  | Sanitary Sewerage 450mm Depth: 3.51m - 4.50m; Sanitary Sewerage 450mm Depth exceeds 4.50m; Sanitary Sewerage 200mm Depth exceeds 3.50m; Sanitary Sewerage 300mm Depth: 0.00 m - 1.50 m.; Sanitary Sewerage 300mm Depth: 1.51m - 2.50m; Sanitary Sewerage 300mm Depth: 2.51m - 3.50m; Sanitary Sewerage 300mm Depth exceeds 3.50m; Sanitary Sewerage 350mm Depth: 0.00 m - 1.50 m.; Sanitary Sewerage 350mm Depth: 1.51m - 2.50m; Sanitary Sewerage 350mm Depth: 2.51m - 3.50m; Sanitary Sewerage 350mm Depth exceeds 3.50m; Sanitary Sewerage 450mm Depth: 0.00 m - 1.50 m.; Sanitary Sewerage 450mm Depth: 1.51m - 2.50m; Sanitary Sewerage 450mm Depth: 2.51m - 3.50m; Excavator [48 h]; Crane [48 h]; Labor [150 h]; Skilled Labor [100 h]; Eq. Operator [100 h]; Plumber [50 h]; Pipe Fitter [50 h]; Sanitary Sewerage 150mm Diameter Depth: 0.00 m - 1.50 m. [3.02]; Sanitary Sewerage 150mm Diameter Depth: 1.51m - 2.50m [30.15]; Sanitary Sewerage 150mm Diameter Depth exceeds 2.50m [3.02]; Sanitary Sewerage 200mm Depth: 0.00 m - 1.50 m. [7.79]; Sanitary Sewerage 200mm Depth: 1.51m - 2.50m [13.18]; Sanitary Sewerage 200mm Depth: 2.51m - 3.50m [6.56] | 23,932.3 | 23,932.3 | A13450 | 1 | L04 |
| CON-LEG101-LR-3270 |  | Granular Surround for Sanitary Sewerage Network [Local – 04 ] | 2d | 2026-02-01 A | 2026-02-02 A | CON-LEG101-LR-3180, CON-LEG101-EN-3450 | 100% |  | 2026-08-30 | 2026-08-31 |  |  | Sanitary Sewerage 450mm Depth: 3.51m - 4.50m; Sanitary Sewerage 450mm Depth exceeds 4.50m; Sanitary Sewerage 200mm Depth exceeds 3.50m; Sanitary Sewerage 300mm Depth: 0.00 m - 1.50 m.; Sanitary Sewerage 300mm Depth: 1.51m - 2.50m; Sanitary Sewerage 300mm Depth: 2.51m - 3.50m; Sanitary Sewerage 300mm Depth exceeds 3.50m; Sanitary Sewerage 350mm Depth: 0.00 m - 1.50 m.; Sanitary Sewerage 350mm Depth: 1.51m - 2.50m; Sanitary Sewerage 350mm Depth: 2.51m - 3.50m; Sanitary Sewerage 350mm Depth exceeds 3.50m; Sanitary Sewerage 450mm Depth: 0.00 m - 1.50 m.; Sanitary Sewerage 450mm Depth: 1.51m - 2.50m; Sanitary Sewerage 450mm Depth: 2.51m - 3.50m; Loader [48 h]; Truck [48 h]; Driver [50 h]; Eq. Operator [50 h]; Sanitary Sewerage 150mm Diameter Depth: 0.00 m - 1.50 m. [0.34]; Sanitary Sewerage 150mm Diameter Depth: 1.51m - 2.50m [3.35]; Sanitary Sewerage 150mm Diameter Depth exceeds 2.50m [0.34]; Sanitary Sewerage 200mm Depth: 0.00 m - 1.50 m. [0.86]; Sanitary Sewerage 200mm Depth: 1.51m - 2.50m [1.47]; Sanitary Sewerage 200mm Depth: 2.51m - 3.50m [0.73] | 2,664.7 | 2,664.7 | A13780 | 1 | L04 |
| CON-LEG101-LR-3090 |  | Testing for Sanitary Sewerage Network [Local – 04 ] | 3d | 2026-02-26 A | 2026-03-02 A | CON-LEG101-LR-3000 | 100% |  | 2026-05-23 | 2026-05-26 |  |  | Sanitary Sewerage 450mm Depth: 3.51m - 4.50m; Sanitary Sewerage 450mm Depth exceeds 4.50m; Sanitary Sewerage 200mm Depth exceeds 3.50m; Sanitary Sewerage 300mm Depth: 0.00 m - 1.50 m.; Sanitary Sewerage 300mm Depth: 1.51m - 2.50m; Sanitary Sewerage 300mm Depth: 2.51m - 3.50m; Sanitary Sewerage 300mm Depth exceeds 3.50m; Sanitary Sewerage 350mm Depth: 0.00 m - 1.50 m.; Sanitary Sewerage 350mm Depth: 1.51m - 2.50m; Sanitary Sewerage 350mm Depth: 2.51m - 3.50m; Sanitary Sewerage 350mm Depth exceeds 3.50m; Sanitary Sewerage 450mm Depth: 0.00 m - 1.50 m.; Sanitary Sewerage 450mm Depth: 1.51m - 2.50m; Sanitary Sewerage 450mm Depth: 2.51m - 3.50m; Labor [200 h]; Skilled Labor [100 h]; Pipe Fitter [100 h]; Sanitary Sewerage 150mm Diameter Depth: 0.00 m - 1.50 m. [0.67]; Sanitary Sewerage 150mm Diameter Depth: 1.51m - 2.50m [6.7]; Sanitary Sewerage 150mm Diameter Depth exceeds 2.50m [0.67]; Sanitary Sewerage 200mm Depth: 0.00 m - 1.50 m. [1.73]; Sanitary Sewerage 200mm Depth: 1.51m - 2.50m [2.93]; Sanitary Sewerage 200mm Depth: 2.51m - 3.50m [1.46] | 5,318.1 | 5,318.1 | A13550 | 1 | L04 |
| CON-LEG101-LR-3180 |  | Concrete encasement, pipe dia 200 and 350 mm [Local – 04 ] | 3d | 2026-12-09 | 2026-12-12 | CON-LEG101-LR-3090, CON-LEG101-EN-3450, CON-LEG101-PR-1430 |  |  |  |  | -59.24d | 0d | Sanitary Sewerage Concrete encasement pipe dia 350 mm; Sanitary Sewerage - Concrete encasement pipe dia 200 mm [134.54]; Labor [200 h]; Carpenter [50 h]; Mason [100 h] | 29,598.8 |  | A13690 |  | L04 |
| CON-LEG101-LR-3360 |  | Installation of Micron Marker Magnetic Tape [Local – 04 ] | 2d | 2026-12-13 | 2026-12-14 | CON-LEG101-LR-3270 |  |  |  |  | -59.24d | 0d | Sanitary Sewerage 450mm Depth: 3.51m - 4.50m; Sanitary Sewerage 450mm Depth exceeds 4.50m; Sanitary Sewerage 200mm Depth exceeds 3.50m; Sanitary Sewerage 300mm Depth: 0.00 m - 1.50 m.; Sanitary Sewerage 300mm Depth: 1.51m - 2.50m; Sanitary Sewerage 300mm Depth: 2.51m - 3.50m; Sanitary Sewerage 300mm Depth exceeds 3.50m; Sanitary Sewerage 350mm Depth: 0.00 m - 1.50 m.; Sanitary Sewerage 350mm Depth: 1.51m - 2.50m; Sanitary Sewerage 350mm Depth: 2.51m - 3.50m; Sanitary Sewerage 350mm Depth exceeds 3.50m; Sanitary Sewerage 450mm Depth: 0.00 m - 1.50 m.; Sanitary Sewerage 450mm Depth: 1.51m - 2.50m; Sanitary Sewerage 450mm Depth: 2.51m - 3.50m; Labor [100 h]; Sanitary Sewerage 150mm Diameter Depth: 0.00 m - 1.50 m. [0.34]; Sanitary Sewerage 150mm Diameter Depth: 1.51m - 2.50m [3.35]; Sanitary Sewerage 150mm Diameter Depth exceeds 2.50m [0.34]; Sanitary Sewerage 200mm Depth: 0.00 m - 1.50 m. [0.86]; Sanitary Sewerage 200mm Depth: 1.51m - 2.50m [1.47]; Sanitary Sewerage 200mm Depth: 2.51m - 3.50m [0.73] | 2,664.7 |  | A13880 |  | L04 |
| CON-LEG101-LR-3450 |  | Backfilling to Subgrade Elevation [Local – 04 ] | 6d | 2026-12-15 | 2026-12-21 | CON-LEG101-LR-3360, CON-LEG101-EN-3440 |  |  |  |  | -59.24d | 7d | Sanitary Sewerage 450mm Depth: 3.51m - 4.50m; Sanitary Sewerage 450mm Depth exceeds 4.50m; Sanitary Sewerage 200mm Depth exceeds 3.50m; Sanitary Sewerage 300mm Depth: 0.00 m - 1.50 m.; Sanitary Sewerage 300mm Depth: 1.51m - 2.50m; Sanitary Sewerage 300mm Depth: 2.51m - 3.50m; Sanitary Sewerage 300mm Depth exceeds 3.50m; Sanitary Sewerage 350mm Depth: 0.00 m - 1.50 m.; Sanitary Sewerage 350mm Depth: 1.51m - 2.50m; Sanitary Sewerage 350mm Depth: 2.51m - 3.50m; Sanitary Sewerage 350mm Depth exceeds 3.50m; Sanitary Sewerage 450mm Depth: 0.00 m - 1.50 m.; Sanitary Sewerage 450mm Depth: 1.51m - 2.50m; Sanitary Sewerage 450mm Depth: 2.51m - 3.50m; Excavator [24 h]; Water Tanker [24 h]; Road Roller [48 h]; Bucket [48 h]; Compactor [48 h]; Labor [100 h]; Driver [50 h]; Eq. Operator [200 h]; Sanitary Sewerage 150mm Diameter Depth: 0.00 m - 1.50 m. [0.67]; Sanitary Sewerage 150mm Diameter Depth: 1.51m - 2.50m [6.7]; Sanitary Sewerage 150mm Diameter Depth exceeds 2.50m [0.67]; Sanitary Sewerage 200mm Depth: 0.00 m - 1.50 m. [1.73]; Sanitary Sewerage 200mm Depth: 1.51m - 2.50m [2.93]; Sanitary Sewerage 200mm Depth: 2.51m - 3.50m [1.46] | 5,318.1 |  | A13980 |  | L04 |

| ID | WBS | Activity | Duration | Start | Finish | Predecessors | Complete | Remaining | Planned start | Planned finish | Total float | Free float | Resources | Cost | Actual cost | Mapping Sheet Activity ID | % A | JEDDAH 1 - Area Name |
| --- | --- | --- | --- | --- | --- | --- | --- | --- | --- | --- | --- | --- | --- | --- | --- | --- | --- | --- |
|  | 1 | **Manhole** |  | 2026-01-28 | 2026-12-12 |  |  |  |  |  |  |  |  |  |  |  |  |  |
| CON-LEG101-LR-3540 |  | Installation of Fiberglass Manholes [Local – 04 ] | 10d | 2026-01-28 A | 2026-12-12 | CON-LEG101-PR-2570, CON-LEG101-LR-3000, CON-LEG101-PR-1750 | 75% | 3d | 2026-07-21 | 2026-08-01 | -51.24d | 15d | Sanitary Sewerage MH depth 1.51 - 2.50 m; Sanitary Sewerage MH depth 1.51 - 2.50 m with back drop; Sanitary Sewerage MH depth 2.51 - 3.50 m; Sanitary Sewerage MH depth 2.51 - 3.50 m with back drop; Sanitary Sewerage MH depth 3.51 - 4.50 m; Sanitary Sewerage MH depth exceeds 3.50 m with back drop; Sanitary Sewerage MH depth exceeds 4.50 m; Sanitary Sewerage MH depth 0.00 m - 1.50 m. [2.68]; Excavator [28.4 h]; Bucket [48 h]; Compactor [48 h]; Labor [100 h]; Eq. Operator [150 h]; Pipe Fitter [100 h] | 42,880 | 32,160 | A14190 | 0.75 | L04 |
|  | 5 | **Local – 05** |  | 2026-01-20 | 2026-12-09 |  |  |  |  |  |  |  |  |  |  |  |  |  |
|  | 1 | **Stormwater Utilities** |  | 2026-01-21 | 2026-08-24 |  |  |  |  |  |  |  |  |  |  |  |  |  |
|  | 2 | **Pipe Work** |  | 2026-01-21 | 2026-04-30 |  |  |  |  |  |  |  |  |  |  |  |  |  |
| CON-LEG101-LR-3640 |  | Excavation for Stormwater Utilities Network [Local – 05 ] | 10d | 2026-01-21 A | 2026-04-23 A | CON-LEG101-LR-3630, CON-LEG101-SD-1000, CON-LEG101-LR-1900, CON-LEG101-EN-1780, CON-LEG101-EN-1790, CON-LEG101-EN-1800, CON-LEG101-EN-3440 | 100% |  | 2026-07-23 | 2026-08-04 |  |  | Stormwater Utilities - GRP Pipes - 400 mm Diameter Depth: 0.00 m - 1.50 m.; Stormwater Utilities - GRP Pipes - 500 mm Depth: 0.00 m - 1.50 m.; Stormwater Utilities - GRP Pipes - 500 mm Depth: 3.51m - 4.50m; Stormwater Utilities - GRP Pipes - 500 mm Depth exceeds 4.50m; Stormwater Utilities - GRP Pipes - 600 mm Depth: 1.51m - 2.50m; Stormwater Utilities - GRP Pipes - 600 mm Depth: 2.51m - 3.50m; Stormwater Utilities - GRP Pipes - 600 mm Depth exceeds 4.50m; Stormwater Utilities - GRP Pipes - 700 mm Depth: 1.51m - 2.50m; Stormwater Utilities - GRP Pipes - 700 mm Depth: 2.51m - 3.50m; Stormwater Utilities - GRP Pipes - 700 mm Depth exceeds 3.50m; Stormwater Utilities - GRP Pipes - 800 mm Depth: 1.51m - 2.50m; Stormwater Utilities - GRP Pipes - 800 mm Depth: 2.51m - 3.50m; Stormwater Utilities - GRP Pipes - 800 mm Depth exceeds 3.50m; Excavator [48 h]; Water Tanker [48 h]; Truck [96 h]; Crane [48 h]; Labor [200 h]; Driver [150 h]; Eq. Operator [100 h]; Stormwater Utilities - GRP Pipes - 400 mm Depth: 1.51m - 2.50m [12.94]; Stormwater Utilities - GRP Pipes - 400 mm Depth exceeds 2.50m [2.68]; Stormwater Utilities - GRP Pipes - 500 mm Depth: 1.51m - 2.50m [33.23]; Stormwater Utilities - GRP Pipes - 500 mm Depth: 2.51m - 3.50m [13.87]; Stormwater Utilities - GRP Pipes - 600 mm Depth: 3.51m - 4.50m [41.66] | 92,863.5 | 92,863.5 | A14730 | 1 | L05 |
| CON-LEG101-LR-3740 |  | Granular bedding for Stormwater Utilities Network [Local – 05 ] | 4d | 2026-01-22 A | 2026-04-25 A | CON-LEG101-LR-3640 | 100% |  | 2026-08-04 | 2026-08-09 |  |  | Stormwater Utilities - GRP Pipes - 400 mm Diameter Depth: 0.00 m - 1.50 m.; Stormwater Utilities - GRP Pipes - 500 mm Depth: 0.00 m - 1.50 m.; Stormwater Utilities - GRP Pipes - 500 mm Depth: 3.51m - 4.50m; Stormwater Utilities - GRP Pipes - 500 mm Depth exceeds 4.50m; Stormwater Utilities - GRP Pipes - 600 mm Depth: 1.51m - 2.50m; Stormwater Utilities - GRP Pipes - 600 mm Depth: 2.51m - 3.50m; Stormwater Utilities - GRP Pipes - 600 mm Depth exceeds 4.50m; Stormwater Utilities - GRP Pipes - 700 mm Depth: 1.51m - 2.50m; Stormwater Utilities - GRP Pipes - 700 mm Depth: 2.51m - 3.50m; Stormwater Utilities - GRP Pipes - 700 mm Depth exceeds 3.50m; Stormwater Utilities - GRP Pipes - 800 mm Depth: 1.51m - 2.50m; Stormwater Utilities - GRP Pipes - 800 mm Depth: 2.51m - 3.50m; Stormwater Utilities - GRP Pipes - 800 mm Depth exceeds 3.50m; Loader [48 h]; Truck [48 h]; Driver [50 h]; Eq. Operator [50 h]; Stormwater Utilities - GRP Pipes - 400 mm Depth: 1.51m - 2.50m [3.24]; Stormwater Utilities - GRP Pipes - 400 mm Depth exceeds 2.50m [0.67]; Stormwater Utilities - GRP Pipes - 500 mm Depth: 1.51m - 2.50m [8.31]; Stormwater Utilities - GRP Pipes - 500 mm Depth: 2.51m - 3.50m [3.47]; Stormwater Utilities - GRP Pipes - 600 mm Depth: 3.51m - 4.50m [10.42] | 23,228.5 | 23,228.5 | A14840 | 1 | L05 |
| CON-LEG101-LR-3840 |  | Installation of Pipe for Stormwater Utilities Network [Local – 05 ] | 8d | 2026-01-24 A | 2026-04-26 A | CON-LEG101-PR-2100, CON-LEG101-PR-2110, CON-LEG101-LR-3740, CON-LEG101-PR-1780, CON-LEG101-PR-1810 | 100% |  | 2026-08-09 | 2026-08-18 |  |  | Stormwater Utilities - GRP Pipes - 400 mm Diameter Depth: 0.00 m - 1.50 m.; Stormwater Utilities - GRP Pipes - 500 mm Depth: 0.00 m - 1.50 m.; Stormwater Utilities - GRP Pipes - 500 mm Depth: 3.51m - 4.50m; Stormwater Utilities - GRP Pipes - 500 mm Depth exceeds 4.50m; Stormwater Utilities - GRP Pipes - 600 mm Depth: 1.51m - 2.50m; Stormwater Utilities - GRP Pipes - 600 mm Depth: 2.51m - 3.50m; Stormwater Utilities - GRP Pipes - 600 mm Depth exceeds 4.50m; Stormwater Utilities - GRP Pipes - 700 mm Depth: 1.51m - 2.50m; Stormwater Utilities - GRP Pipes - 700 mm Depth: 2.51m - 3.50m; Stormwater Utilities - GRP Pipes - 700 mm Depth exceeds 3.50m; Stormwater Utilities - GRP Pipes - 800 mm Depth: 1.51m - 2.50m; Stormwater Utilities - GRP Pipes - 800 mm Depth: 2.51m - 3.50m; Stormwater Utilities - GRP Pipes - 800 mm Depth exceeds 3.50m; Excavator [48 h]; Crane [48 h]; Labor [150 h]; Skilled Labor [100 h]; Eq. Operator [100 h]; Plumber [50 h]; Pipe Fitter [50 h]; Stormwater Utilities - GRP Pipes - 400 mm Depth: 1.51m - 2.50m [29.12]; Stormwater Utilities - GRP Pipes - 400 mm Depth exceeds 2.50m [6.03]; Stormwater Utilities - GRP Pipes - 500 mm Depth: 1.51m - 2.50m [74.76]; Stormwater Utilities - GRP Pipes - 500 mm Depth: 2.51m - 3.50m [31.21]; Stormwater Utilities - GRP Pipes - 600 mm Depth: 3.51m - 4.50m [93.77] | 208,985 | 208,985 | A14950 | 1 | L05 |
| CON-LEG101-LR-4040 |  | Granular Surround for Stormwater Utilities Network [Local – 05 ] | 6d | 2026-01-25 A | 2026-04-28 A | CON-LEG101-LR-3940, CON-LEG101-EN-3450 | 100% |  | 2026-08-25 | 2026-09-01 |  |  | Stormwater Utilities - GRP Pipes - 400 mm Diameter Depth: 0.00 m - 1.50 m.; Stormwater Utilities - GRP Pipes - 500 mm Depth: 0.00 m - 1.50 m.; Stormwater Utilities - GRP Pipes - 500 mm Depth: 3.51m - 4.50m; Stormwater Utilities - GRP Pipes - 500 mm Depth exceeds 4.50m; Stormwater Utilities - GRP Pipes - 600 mm Depth: 1.51m - 2.50m; Stormwater Utilities - GRP Pipes - 600 mm Depth: 2.51m - 3.50m; Stormwater Utilities - GRP Pipes - 600 mm Depth exceeds 4.50m; Stormwater Utilities - GRP Pipes - 700 mm Depth: 1.51m - 2.50m; Stormwater Utilities - GRP Pipes - 700 mm Depth: 2.51m - 3.50m; Stormwater Utilities - GRP Pipes - 700 mm Depth exceeds 3.50m; Stormwater Utilities - GRP Pipes - 800 mm Depth: 1.51m - 2.50m; Stormwater Utilities - GRP Pipes - 800 mm Depth: 2.51m - 3.50m; Stormwater Utilities - GRP Pipes - 800 mm Depth exceeds 3.50m; Loader [48 h]; Truck [48 h]; Driver [50 h]; Eq. Operator [50 h]; Stormwater Utilities - GRP Pipes - 400 mm Depth: 1.51m - 2.50m [3.24]; Stormwater Utilities - GRP Pipes - 400 mm Depth exceeds 2.50m [0.67]; Stormwater Utilities - GRP Pipes - 500 mm Depth: 1.51m - 2.50m [8.31]; Stormwater Utilities - GRP Pipes - 500 mm Depth: 2.51m - 3.50m [3.47]; Stormwater Utilities - GRP Pipes - 600 mm Depth: 3.51m - 4.50m [10.42] | 23,228.5 | 23,228.5 | A15170 | 1 | L05 |
| CON-LEG101-LR-3940 |  | Testing for Stormwater Utilities Network [Local – 05 ] | 6d | 2026-03-11 A | 2026-04-28 A | CON-LEG101-LR-3840 | 100% |  | 2026-06-10 | 2026-06-17 |  |  | Stormwater Utilities - GRP Pipes - 400 mm Diameter Depth: 0.00 m - 1.50 m.; Stormwater Utilities - GRP Pipes - 500 mm Depth: 0.00 m - 1.50 m.; Stormwater Utilities - GRP Pipes - 500 mm Depth: 3.51m - 4.50m; Stormwater Utilities - GRP Pipes - 500 mm Depth exceeds 4.50m; Stormwater Utilities - GRP Pipes - 600 mm Depth: 1.51m - 2.50m; Stormwater Utilities - GRP Pipes - 600 mm Depth: 2.51m - 3.50m; Stormwater Utilities - GRP Pipes - 600 mm Depth exceeds 4.50m; Stormwater Utilities - GRP Pipes - 700 mm Depth: 1.51m - 2.50m; Stormwater Utilities - GRP Pipes - 700 mm Depth: 2.51m - 3.50m; Stormwater Utilities - GRP Pipes - 700 mm Depth exceeds 3.50m; Stormwater Utilities - GRP Pipes - 800 mm Depth: 1.51m - 2.50m; Stormwater Utilities - GRP Pipes - 800 mm Depth: 2.51m - 3.50m; Stormwater Utilities - GRP Pipes - 800 mm Depth exceeds 3.50m; Labor [200 h]; Skilled Labor [100 h]; Pipe Fitter [100 h]; Stormwater Utilities - GRP Pipes - 400 mm Depth: 1.51m - 2.50m [6.47]; Stormwater Utilities - GRP Pipes - 400 mm Depth exceeds 2.50m [1.34]; Stormwater Utilities - GRP Pipes - 500 mm Depth: 1.51m - 2.50m [16.62]; Stormwater Utilities - GRP Pipes - 500 mm Depth: 2.51m - 3.50m [6.93]; Stormwater Utilities - GRP Pipes - 600 mm Depth: 3.51m - 4.50m [20.84] | 46,443 | 46,443 | A15060 | 1 | L05 |
| CON-LEG101-LR-4150 |  | Installation of Micron Marker Magnetic Tape [Local – 05 ] | 2d | 2026-03-14 A | 2026-04-29 A | CON-LEG101-LR-4040 | 100% |  | 2026-06-18 | 2026-06-21 |  |  | Stormwater Utilities - GRP Pipes - 400 mm Diameter Depth: 0.00 m - 1.50 m.; Stormwater Utilities - GRP Pipes - 500 mm Depth: 0.00 m - 1.50 m.; Stormwater Utilities - GRP Pipes - 500 mm Depth: 3.51m - 4.50m; Stormwater Utilities - GRP Pipes - 500 mm Depth exceeds 4.50m; Stormwater Utilities - GRP Pipes - 600 mm Depth: 1.51m - 2.50m; Stormwater Utilities - GRP Pipes - 600 mm Depth: 2.51m - 3.50m; Stormwater Utilities - GRP Pipes - 600 mm Depth exceeds 4.50m; Stormwater Utilities - GRP Pipes - 700 mm Depth: 1.51m - 2.50m; Stormwater Utilities - GRP Pipes - 700 mm Depth: 2.51m - 3.50m; Stormwater Utilities - GRP Pipes - 700 mm Depth exceeds 3.50m; Stormwater Utilities - GRP Pipes - 800 mm Depth: 1.51m - 2.50m; Stormwater Utilities - GRP Pipes - 800 mm Depth: 2.51m - 3.50m; Stormwater Utilities - GRP Pipes - 800 mm Depth exceeds 3.50m; Labor [100 h]; Stormwater Utilities - GRP Pipes - 400 mm Depth: 1.51m - 2.50m [3.24]; Stormwater Utilities - GRP Pipes - 400 mm Depth exceeds 2.50m [0.67]; Stormwater Utilities - GRP Pipes - 500 mm Depth: 1.51m - 2.50m [8.31]; Stormwater Utilities - GRP Pipes - 500 mm Depth: 2.51m - 3.50m [3.47]; Stormwater Utilities - GRP Pipes - 600 mm Depth: 3.51m - 4.50m [10.42] | 23,228.5 | 23,228.5 | A15280 | 1 | L05 |
| CON-LEG101-LR-4260 |  | Backfilling to Subgrade Elevation [Local – 05 ] | 8d | 2026-03-16 A | 2026-04-30 A | CON-LEG101-LR-4150, CON-LEG101-EN-3440 | 100% |  | 2026-06-21 | 2026-06-30 |  |  | Stormwater Utilities - GRP Pipes - 400 mm Diameter Depth: 0.00 m - 1.50 m.; Stormwater Utilities - GRP Pipes - 400 mm Depth: 1.51m - 2.50m [6.49]; Stormwater Utilities - GRP Pipes - 500 mm Depth: 0.00 m - 1.50 m.; Stormwater Utilities - GRP Pipes - 500 mm Depth: 3.51m - 4.50m; Stormwater Utilities - GRP Pipes - 500 mm Depth exceeds 4.50m; Stormwater Utilities - GRP Pipes - 600 mm Depth: 1.51m - 2.50m; Stormwater Utilities - GRP Pipes - 600 mm Depth: 2.51m - 3.50m; Stormwater Utilities - GRP Pipes - 600 mm Depth exceeds 4.50m; Stormwater Utilities - GRP Pipes - 700 mm Depth: 1.51m - 2.50m; Stormwater Utilities - GRP Pipes - 700 mm Depth: 2.51m - 3.50m; Stormwater Utilities - GRP Pipes - 700 mm Depth exceeds 3.50m; Stormwater Utilities - GRP Pipes - 800 mm Depth: 1.51m - 2.50m; Stormwater Utilities - GRP Pipes - 800 mm Depth: 2.51m - 3.50m; Stormwater Utilities - GRP Pipes - 800 mm Depth exceeds 3.50m; Excavator [48 h]; Water Tanker [24 h]; Road Roller [48 h]; Bucket [48 h]; Compactor [48 h]; Labor [100 h]; Driver [50 h]; Eq. Operator [200 h]; Stormwater Utilities - GRP Pipes - 400 mm Depth exceeds 2.50m [1.34]; Stormwater Utilities - GRP Pipes - 500 mm Depth: 1.51m - 2.50m [16.62]; Stormwater Utilities - GRP Pipes - 500 mm Depth: 2.51m - 3.50m [6.93]; Stormwater Utilities - GRP Pipes - 600 mm Depth: 3.51m - 4.50m [20.84] | 46,455 | 46,455 | A15390 | 1 | L05 |
|  | 1 | **Manhole** |  | 2026-01-21 | 2026-08-24 |  |  |  |  |  |  |  |  |  |  |  |  |  |
| CON-LEG101-LR-11450 |  | Excavation of Inlet Manholes [Local – 05 ] | 10d | 2026-01-21 A | 2026-04-26 A | CON-LEG101-LR-3640 | 100% |  | 2026-08-04 | 2026-08-16 |  |  | Stormwater Utilities - (ring 1200 mm internal dia.) MH depth 1.51 - 2.50m [0.7]; Stormwater Utilities - (ring 1200 mm internal dia.) MH depth 2.51 - 3.50m [0.17]; Stormwater Utilities - (ring 1200 mm internal dia.) MH depth 3.51 - 4.50m [0.1]; Stormwater Utilities - (ring 1200 mm internal dia.) MH depth exceeds 4.50m; Stormwater Utilities - (ring 1500 mm internal dia.) MH depth exceeds 3.50m; Stormwater Utilities - (ring 1500 mm internal dia.) MH depth 1.51 - 2.50m; Stormwater Utilities - (ring 1500 mm internal dia.) MH depth 2.51 - 3.50m | 17,025 | 17,025 |  | 1 | L05 |
| CON-LEG101-LR-11460 |  | PC of Inlet Manholes [Local – 05 ] | 3d | 2026-02-04 A | 2026-04-27 A | CON-LEG101-LR-11450 | 100% |  | 2026-06-04 | 2026-06-08 |  |  | Stormwater Utilities - (ring 1200 mm internal dia.) MH depth 1.51 - 2.50m [0.47]; Stormwater Utilities - (ring 1200 mm internal dia.) MH depth 2.51 - 3.50m [0.11]; Stormwater Utilities - (ring 1200 mm internal dia.) MH depth 3.51 - 4.50m [0.07]; Stormwater Utilities - (ring 1200 mm internal dia.) MH depth exceeds 4.50m; Stormwater Utilities - (ring 1500 mm internal dia.) MH depth exceeds 3.50m; Stormwater Utilities - (ring 1500 mm internal dia.) MH depth 1.51 - 2.50m; Stormwater Utilities - (ring 1500 mm internal dia.) MH depth 2.51 - 3.50m | 11,430 | 11,430 |  | 1 | L05 |
| CON-LEG101-LR-4380 |  | Installation of Inlet Manholes [Local – 05 ] | 10d | 2026-02-11 A | 2026-04-30 A | CON-LEG101-LR-11460, CON-LEG101-LR-3840, CON-LEG101-PR-1980 | 100% |  | 2026-06-03 | 2026-06-15 |  |  | Stormwater Utilities - (ring 1200 mm internal dia.) MH depth exceeds 4.50m; Stormwater Utilities - (ring 1500 mm internal dia.) MH depth exceeds 3.50m; Stormwater Utilities - (ring 1500 mm internal dia.) MH depth 1.51 - 2.50m; Stormwater Utilities - (ring 1500 mm internal dia.) MH depth 2.51 - 3.50m; Stormwater Utilities - (ring 1200 mm internal dia.) MH depth 1.51 - 2.50m [2.1]; Stormwater Utilities - (ring 1200 mm internal dia.) MH depth 2.51 - 3.50m [0.52]; Stormwater Utilities - (ring 1200 mm internal dia.) MH depth 3.51 - 4.50m [0.29]; Excavator [22.8 h]; Bucket [48 h]; Compactor [48 h]; Labor [100 h]; Eq. Operator [150 h]; Pipe Fitter [100 h] | 51,000 | 51,000 | A15610 | 1 | L05 |
| CON-LEG101-LR-11470 |  | Backfilling of Inlet Manholes [Local – 05 ] | 8d | 2026-04-15 A | 2026-05-07 A | CON-LEG101-LR-4380 | 100% |  | 2026-07-07 | 2026-07-16 |  |  | Stormwater Utilities - (ring 1200 mm internal dia.) MH depth 1.51 - 2.50m [0.93]; Stormwater Utilities - (ring 1200 mm internal dia.) MH depth 2.51 - 3.50m [0.23]; Stormwater Utilities - (ring 1200 mm internal dia.) MH depth 3.51 - 4.50m [0.13]; Stormwater Utilities - (ring 1200 mm internal dia.) MH depth exceeds 4.50m; Stormwater Utilities - (ring 1500 mm internal dia.) MH depth exceeds 3.50m; Stormwater Utilities - (ring 1500 mm internal dia.) MH depth 1.51 - 2.50m; Stormwater Utilities - (ring 1500 mm internal dia.) MH depth 2.51 - 3.50m | 22,620 | 22,620 |  | 1 | L05 |
| CON-LEG101-LR-11480 |  | Finishing and Testing of Inlet Manholes [Local – 05 ] | 11d | 2026-07-04 A | 2026-08-24 A | CON-LEG101-LR-11470, CON-LEG101-LR-4380, CON-LEG101-LR-11390 | 100% |  | 2026-10-03 | 2026-10-15 |  |  | Stormwater Utilities - (ring 1200 mm internal dia.) MH depth 1.51 - 2.50m [0.47]; Stormwater Utilities - (ring 1200 mm internal dia.) MH depth 2.51 - 3.50m [0.11]; Stormwater Utilities - (ring 1200 mm internal dia.) MH depth 3.51 - 4.50m [0.07]; Stormwater Utilities - (ring 1200 mm internal dia.) MH depth exceeds 4.50m; Stormwater Utilities - (ring 1500 mm internal dia.) MH depth exceeds 3.50m; Stormwater Utilities - (ring 1500 mm internal dia.) MH depth 1.51 - 2.50m; Stormwater Utilities - (ring 1500 mm internal dia.) MH depth 2.51 - 3.50m | 11,430 | 11,430 |  | 1 | L05 |
|  | 3 | **Concrete Chambers/Outfalls** |  | 2026-05-02 | 2026-08-23 |  |  |  |  |  |  |  |  |  |  |  |  |  |
| CON-LEG101-LR-11490 |  | Excavation of Concrete chambers [Local – 05 ] | 6d | 2026-05-02 A | 2026-05-10 A | CON-LEG101-LR-4380 | 100% |  | 2026-07-05 | 2026-07-12 |  |  | Single Catch basin as per drawings [1.39]; Double Catch basin as per drawings [0.06]; Curb inlet catch basin [0.86] | 21,100 | 21,100 |  | 1 | L05 |
| CON-LEG101-LR-11500 |  | PC of Concrete chambers [Local – 05 ] | 2d | 2026-05-03 A | 2026-05-11 A | CON-LEG101-LR-11490 | 100% |  | 2026-07-12 | 2026-07-14 |  |  | Single Catch basin as per drawings [0.93]; Double Catch basin as per drawings [0.04]; Curb inlet catch basin [0.57] | 14,040 | 14,040 |  | 1 | L05 |
| CON-LEG101-LR-11510 |  | Installation UPVC Pipes to Concrete chambers [Local – 05 ] | 4d | 2026-05-04 A | 2026-05-14 A | CON-LEG101-LR-11490, CON-LEG101-LR-4480 | 100% |  | 2026-07-26 | 2026-07-30 |  |  | Stormwater Utilities - PVC Pipes - 300 mm Diameter Depth: 0.00 m - 1.50 m. [84.02]; Stormwater Utilities - PVC Pipes - 300 mm Diameter Depth: 1.51m - 2.50m [123.09]; Stormwater Utilities - PVC Pipes - 400 mm Diameter Depth: 0.00 m - 1.50 m. [3.35]; Stormwater Utilities - PVC Pipes - 500 mm Depth: 0.00 m - 1.50 m. [13.4]; Stormwater Utilities - PVC Pipes - 400 mm Diameter Depth: 1.51m - 2.50m [5.36]; Stormwater Utilities - PVC Pipes - 400 mm Diameter Depth exceeds 2.50m [5.35]; Stormwater Utilities - PVC Pipes - 500 mm Depth: 1.51m - 2.50m [38.03]; Stormwater Utilities - PVC Pipes - 300 mm Diameter Depth exceeds 2.50m; Stormwater Utilities - PVC Pipes - 500 mm Depth exceeds 2.50m | 137,140.1 | 137,140.1 |  | 1 | L05 |
| CON-LEG101-LR-4480 |  | Installation of Concrete chambers [Local – 05 ] | 10d | 2026-05-04 A | 2026-05-13 A | CON-LEG101-LR-11500, CON-LEG101-LR-4380, CON-LEG101-LR-3840, CON-LEG101-PR-1990 | 100% |  | 2026-07-14 | 2026-07-26 |  |  | Single Catch basin as per drawings [4.18]; Double Catch basin as per drawings [0.18]; Curb inlet catch basin [2.57]; Excavator [31 h]; Labor [100 h]; Skilled Labor [50 h]; Eq. Operator [50 h]; Pipe Fitter [50 h] | 63,220 | 63,220 | A15760 | 1 | L05 |
| CON-LEG101-LR-11520 |  | Backfilling to Concrete chambers [Local – 05 ] | 4d | 2026-05-07 A | 2026-05-16 A | CON-LEG101-LR-11510, CON-LEG101-LR-4480 | 100% |  | 2026-07-15 | 2026-07-20 |  |  | Single Catch basin as per drawings [1.86]; Double Catch basin as per drawings [0.08]; Curb inlet catch basin [1.15] | 28,220 | 28,220 |  | 1 | L05 |
| CON-LEG101-LR-11530 |  | FInishing and Testing of Concrete chambers [Local – 05 ] | 14d | 2026-07-04 A | 2026-08-23 A | CON-LEG101-LR-11510, CON-LEG101-LR-11520, CON-LEG101-LR-11440 | 100% |  | 2026-10-13 | 2026-10-29 |  |  | Single Catch basin as per drawings [0.93]; Double Catch basin as per drawings [0.04]; Curb inlet catch basin [0.57] | 14,040 | 14,040 |  | 1 | L05 |

| ID | WBS | Activity | Duration | Start | Finish | Predecessors | Complete | Remaining | Planned start | Planned finish | Total float | Free float | Resources | Cost | Actual cost | Mapping Sheet Activity ID | % A | JEDDAH 1 - Area Name |
| --- | --- | --- | --- | --- | --- | --- | --- | --- | --- | --- | --- | --- | --- | --- | --- | --- | --- | --- |
|  | 4 | **Sanitary Sewerage** |  | 2026-01-20 | 2026-12-09 |  |  |  |  |  |  |  |  |  |  |  |  |  |
|  | 2 | **Pipe Work** |  | 2026-01-20 | 2026-05-07 |  |  |  |  |  |  |  |  |  |  |  |  |  |
| CON-LEG101-LR-2830 |  | Excavation for Sanitary Sewerage Network [Local – 05 ] | 8d | 2026-01-20 A | 2026-02-09 A | CON-LEG101-LR-3640, CON-LEG101-EN-1750, CON-LEG101-EN-1760, CON-LEG101-EN-1770, CON-LEG101-EN-3440 | 100% |  | 2026-08-04 | 2026-08-13 |  |  | Sanitary Sewerage 450mm Depth: 3.51m - 4.50m; Sanitary Sewerage 450mm Depth exceeds 4.50m; Sanitary Sewerage 150mm Diameter Depth: 0.00 m - 1.50 m.; Sanitary Sewerage 150mm Diameter Depth: 1.51m - 2.50m; Sanitary Sewerage 150mm Diameter Depth exceeds 2.50m; Sanitary Sewerage 200mm Depth exceeds 3.50m; Sanitary Sewerage 300mm Depth: 0.00 m - 1.50 m.; Sanitary Sewerage 300mm Depth: 1.51m - 2.50m; Sanitary Sewerage 300mm Depth: 2.51m - 3.50m; Sanitary Sewerage 300mm Depth exceeds 3.50m; Sanitary Sewerage 350mm Depth: 0.00 m - 1.50 m.; Sanitary Sewerage 350mm Depth: 1.51m - 2.50m; Sanitary Sewerage 350mm Depth: 2.51m - 3.50m; Sanitary Sewerage 350mm Depth exceeds 3.50m; Sanitary Sewerage 450mm Depth: 0.00 m - 1.50 m.; Sanitary Sewerage 450mm Depth: 1.51m - 2.50m; Sanitary Sewerage 450mm Depth: 2.51m - 3.50m; Excavator [48 h]; Water Tanker [48 h]; Truck [96 h]; Crane [48 h]; Labor [200 h]; Driver [150 h]; Eq. Operator [100 h]; Sanitary Sewerage 200mm Depth: 0.00 m - 1.50 m. [34.6]; Sanitary Sewerage 200mm Depth: 1.51m - 2.50m [58.58]; Sanitary Sewerage 200mm Depth: 2.51m - 3.50m [29.16] | 44,697 | 44,697 | A13260 | 1 | L05 |
| CON-LEG101-LR-2920 |  | Granular bedding for Sanitary Sewerage Network [Local – 05 ] | 4d | 2026-01-21 A | 2026-04-21 A | CON-LEG101-LR-2830 | 100% |  | 2026-08-13 | 2026-08-18 |  |  | Sanitary Sewerage 450mm Depth: 3.51m - 4.50m; Sanitary Sewerage 450mm Depth exceeds 4.50m; Sanitary Sewerage 150mm Diameter Depth: 0.00 m - 1.50 m.; Sanitary Sewerage 150mm Diameter Depth: 1.51m - 2.50m; Sanitary Sewerage 150mm Diameter Depth exceeds 2.50m; Sanitary Sewerage 200mm Depth exceeds 3.50m; Sanitary Sewerage 300mm Depth: 0.00 m - 1.50 m.; Sanitary Sewerage 300mm Depth: 1.51m - 2.50m; Sanitary Sewerage 300mm Depth: 2.51m - 3.50m; Sanitary Sewerage 300mm Depth exceeds 3.50m; Sanitary Sewerage 350mm Depth: 0.00 m - 1.50 m.; Sanitary Sewerage 350mm Depth: 1.51m - 2.50m; Sanitary Sewerage 350mm Depth: 2.51m - 3.50m; Sanitary Sewerage 350mm Depth exceeds 3.50m; Sanitary Sewerage 450mm Depth: 0.00 m - 1.50 m.; Sanitary Sewerage 450mm Depth: 1.51m - 2.50m; Sanitary Sewerage 450mm Depth: 2.51m - 3.50m; Loader [48 h]; Truck [48 h]; Driver [50 h]; Eq. Operator [50 h]; Sanitary Sewerage 200mm Depth: 0.00 m - 1.50 m. [8.65]; Sanitary Sewerage 200mm Depth: 1.51m - 2.50m [14.65]; Sanitary Sewerage 200mm Depth: 2.51m - 3.50m [7.29] | 11,176 | 11,176 | A13360 | 1 | L05 |
| CON-LEG101-LR-3010 |  | Installation of Pipe for Sanitary Sewerage Network [Local – 05 ] | 8d | 2026-01-22 A | 2026-04-23 A | CON-LEG101-PR-2560, CON-LEG101-LR-2920, CON-LEG101-PR-1720 | 100% |  | 2026-08-18 | 2026-08-27 |  |  | Sanitary Sewerage 450mm Depth: 3.51m - 4.50m; Sanitary Sewerage 450mm Depth exceeds 4.50m; Sanitary Sewerage 150mm Diameter Depth: 0.00 m - 1.50 m.; Sanitary Sewerage 150mm Diameter Depth: 1.51m - 2.50m; Sanitary Sewerage 150mm Diameter Depth exceeds 2.50m; Sanitary Sewerage 200mm Depth exceeds 3.50m; Sanitary Sewerage 300mm Depth: 0.00 m - 1.50 m.; Sanitary Sewerage 300mm Depth: 1.51m - 2.50m; Sanitary Sewerage 300mm Depth: 2.51m - 3.50m; Sanitary Sewerage 300mm Depth exceeds 3.50m; Sanitary Sewerage 350mm Depth: 0.00 m - 1.50 m.; Sanitary Sewerage 350mm Depth: 1.51m - 2.50m; Sanitary Sewerage 350mm Depth: 2.51m - 3.50m; Sanitary Sewerage 350mm Depth exceeds 3.50m; Sanitary Sewerage 450mm Depth: 0.00 m - 1.50 m.; Sanitary Sewerage 450mm Depth: 1.51m - 2.50m; Sanitary Sewerage 450mm Depth: 2.51m - 3.50m; Excavator [48 h]; Crane [48 h]; Labor [150 h]; Skilled Labor [100 h]; Eq. Operator [100 h]; Plumber [50 h]; Pipe Fitter [50 h]; Sanitary Sewerage 200mm Depth: 0.00 m - 1.50 m. [77.85]; Sanitary Sewerage 200mm Depth: 1.51m - 2.50m [131.82]; Sanitary Sewerage 200mm Depth: 2.51m - 3.50m [65.61] | 100,573.5 | 100,573.5 | A13460 | 1 | L05 |
| CON-LEG101-LR-3280 |  | Granular Surround for Sanitary Sewerage Network [Local – 05 ] | 2d | 2026-01-24 A | 2026-05-05 A | CON-LEG101-LR-3200, CON-LEG101-EN-3450 | 100% |  | 2026-09-06 | 2026-09-08 |  |  | Sanitary Sewerage 450mm Depth: 3.51m - 4.50m; Sanitary Sewerage 450mm Depth exceeds 4.50m; Sanitary Sewerage 150mm Diameter Depth: 0.00 m - 1.50 m.; Sanitary Sewerage 150mm Diameter Depth: 1.51m - 2.50m; Sanitary Sewerage 150mm Diameter Depth exceeds 2.50m; Sanitary Sewerage 200mm Depth exceeds 3.50m; Sanitary Sewerage 300mm Depth: 0.00 m - 1.50 m.; Sanitary Sewerage 300mm Depth: 1.51m - 2.50m; Sanitary Sewerage 300mm Depth: 2.51m - 3.50m; Sanitary Sewerage 300mm Depth exceeds 3.50m; Sanitary Sewerage 350mm Depth: 0.00 m - 1.50 m.; Sanitary Sewerage 350mm Depth: 1.51m - 2.50m; Sanitary Sewerage 350mm Depth: 2.51m - 3.50m; Sanitary Sewerage 350mm Depth exceeds 3.50m; Sanitary Sewerage 450mm Depth: 0.00 m - 1.50 m.; Sanitary Sewerage 450mm Depth: 1.51m - 2.50m; Sanitary Sewerage 450mm Depth: 2.51m - 3.50m; Loader [48 h]; Truck [48 h]; Driver [50 h]; Eq. Operator [50 h]; Sanitary Sewerage 200mm Depth: 0.00 m - 1.50 m. [8.65]; Sanitary Sewerage 200mm Depth: 1.51m - 2.50m [14.65]; Sanitary Sewerage 200mm Depth: 2.51m - 3.50m [7.29] | 11,176 | 11,176 | A13790 | 1 | L05 |
| CON-LEG101-LR-3200 |  | Concrete encasement, pipe dia 200 and 350 mm [Local – 05 ] | 4d | 2026-02-10 A | 2026-02-10 A | CON-LEG101-LR-3100, CON-LEG101-EN-3450, CON-LEG101-PR-1430 | 100% |  | 2026-06-09 | 2026-06-13 |  |  | Sanitary Sewerage Concrete encasement pipe dia 350 mm; Sanitary Sewerage - Concrete encasement pipe dia 200 mm [168.17]; Labor [200 h]; Carpenter [50 h]; Mason [100 h] | 36,997.4 | 36,997.4 | A13700 | 1 | L05 |
| CON-LEG101-LR-3100 |  | Testing for Sanitary Sewerage Network [Local – 05 ] | 4d | 2026-03-01 A | 2026-05-03 A | CON-LEG101-LR-3010 | 100% |  | 2026-05-26 | 2026-06-04 |  |  | Sanitary Sewerage 450mm Depth: 3.51m - 4.50m; Sanitary Sewerage 450mm Depth exceeds 4.50m; Sanitary Sewerage 150mm Diameter Depth: 0.00 m - 1.50 m.; Sanitary Sewerage 150mm Diameter Depth: 1.51m - 2.50m; Sanitary Sewerage 150mm Diameter Depth exceeds 2.50m; Sanitary Sewerage 200mm Depth exceeds 3.50m; Sanitary Sewerage 300mm Depth: 0.00 m - 1.50 m.; Sanitary Sewerage 300mm Depth: 1.51m - 2.50m; Sanitary Sewerage 300mm Depth: 2.51m - 3.50m; Sanitary Sewerage 300mm Depth exceeds 3.50m; Sanitary Sewerage 350mm Depth: 0.00 m - 1.50 m.; Sanitary Sewerage 350mm Depth: 1.51m - 2.50m; Sanitary Sewerage 350mm Depth: 2.51m - 3.50m; Sanitary Sewerage 350mm Depth exceeds 3.50m; Sanitary Sewerage 450mm Depth: 0.00 m - 1.50 m.; Sanitary Sewerage 450mm Depth: 1.51m - 2.50m; Sanitary Sewerage 450mm Depth: 2.51m - 3.50m; Labor [200 h]; Skilled Labor [100 h]; Pipe Fitter [100 h]; Sanitary Sewerage 200mm Depth: 0.00 m - 1.50 m. [17.3]; Sanitary Sewerage 200mm Depth: 1.51m - 2.50m [29.29]; Sanitary Sewerage 200mm Depth: 2.51m - 3.50m [14.58] | 22,348.5 | 22,348.5 | A13560 | 1 | L05 |
| CON-LEG101-LR-3370 |  | Installation of Micron Marker Magnetic Tape [Local – 05 ] | 2d | 2026-03-11 A | 2026-05-06 A | CON-LEG101-LR-3280 | 100% |  | 2026-06-03 | 2026-06-06 |  |  | Sanitary Sewerage 450mm Depth: 3.51m - 4.50m; Sanitary Sewerage 450mm Depth exceeds 4.50m; Sanitary Sewerage 150mm Diameter Depth: 0.00 m - 1.50 m.; Sanitary Sewerage 150mm Diameter Depth: 1.51m - 2.50m; Sanitary Sewerage 150mm Diameter Depth exceeds 2.50m; Sanitary Sewerage 200mm Depth exceeds 3.50m; Sanitary Sewerage 300mm Depth: 0.00 m - 1.50 m.; Sanitary Sewerage 300mm Depth: 1.51m - 2.50m; Sanitary Sewerage 300mm Depth: 2.51m - 3.50m; Sanitary Sewerage 300mm Depth exceeds 3.50m; Sanitary Sewerage 350mm Depth: 0.00 m - 1.50 m.; Sanitary Sewerage 350mm Depth: 1.51m - 2.50m; Sanitary Sewerage 350mm Depth: 2.51m - 3.50m; Sanitary Sewerage 350mm Depth exceeds 3.50m; Sanitary Sewerage 450mm Depth: 0.00 m - 1.50 m.; Sanitary Sewerage 450mm Depth: 1.51m - 2.50m; Sanitary Sewerage 450mm Depth: 2.51m - 3.50m; Labor [100 h]; Sanitary Sewerage 200mm Depth: 0.00 m - 1.50 m. [8.65]; Sanitary Sewerage 200mm Depth: 1.51m - 2.50m [14.65]; Sanitary Sewerage 200mm Depth: 2.51m - 3.50m [7.29] | 11,176 | 11,176 | A13890 | 1 | L05 |
| CON-LEG101-LR-3460 |  | Backfilling to Subgrade Elevation [Local – 05 ] | 4d | 2026-03-14 A | 2026-05-07 A | CON-LEG101-LR-3370, CON-LEG101-EN-3440 | 100% |  | 2026-06-06 | 2026-06-10 |  |  | Sanitary Sewerage 450mm Depth: 3.51m - 4.50m; Sanitary Sewerage 450mm Depth exceeds 4.50m; Sanitary Sewerage 150mm Diameter Depth: 0.00 m - 1.50 m.; Sanitary Sewerage 150mm Diameter Depth: 1.51m - 2.50m; Sanitary Sewerage 150mm Diameter Depth exceeds 2.50m; Sanitary Sewerage 200mm Depth exceeds 3.50m; Sanitary Sewerage 300mm Depth: 0.00 m - 1.50 m.; Sanitary Sewerage 300mm Depth: 1.51m - 2.50m; Sanitary Sewerage 300mm Depth: 2.51m - 3.50m; Sanitary Sewerage 300mm Depth exceeds 3.50m; Sanitary Sewerage 350mm Depth: 0.00 m - 1.50 m.; Sanitary Sewerage 350mm Depth: 1.51m - 2.50m; Sanitary Sewerage 350mm Depth: 2.51m - 3.50m; Sanitary Sewerage 350mm Depth exceeds 3.50m; Sanitary Sewerage 450mm Depth: 0.00 m - 1.50 m.; Sanitary Sewerage 450mm Depth: 1.51m - 2.50m; Sanitary Sewerage 450mm Depth: 2.51m - 3.50m; Excavator [32 h]; Water Tanker [32 h]; Road Roller [48 h]; Bucket [48 h]; Compactor [48 h]; Labor [100 h]; Driver [50 h]; Eq. Operator [200 h]; Sanitary Sewerage 200mm Depth: 0.00 m - 1.50 m. [17.3]; Sanitary Sewerage 200mm Depth: 1.51m - 2.50m [29.29]; Sanitary Sewerage 200mm Depth: 2.51m - 3.50m [14.58] | 22,348.5 | 22,348.5 | A13990 | 1 | L05 |
|  | 1 | **Manhole** |  | 2026-01-20 | 2026-12-09 |  |  |  |  |  |  |  |  |  |  |  |  |  |
| CON-LEG101-LR-3550 |  | Installation of Fiberglass Manholes [Local – 05 ] | 18d | 2026-01-20 A | 2026-12-09 | CON-LEG101-PR-2570, CON-LEG101-LR-3010, CON-LEG101-PR-1750 | 95% | 0.9d | 2026-08-27 | 2026-09-17 | 48.1d | 0d | Sanitary Sewerage MH depth 0.00 m - 1.50 m.; Sanitary Sewerage MH depth 1.51 - 2.50 m with back drop; Sanitary Sewerage MH depth 2.51 - 3.50 m; Sanitary Sewerage MH depth 2.51 - 3.50 m with back drop; Sanitary Sewerage MH depth 3.51 - 4.50 m; Sanitary Sewerage MH depth exceeds 3.50 m with back drop; Sanitary Sewerage MH depth exceeds 4.50 m; Sanitary Sewerage MH depth 1.51 - 2.50 m [8.04]; Excavator [28 h]; Bucket [48 h]; Compactor [48 h]; Labor [100 h]; Eq. Operator [150 h]; Pipe Fitter [100 h] | 136,680 | 129,846 | A14200 | 0.9 | L05 |
|  | 6 | **Local – 06** |  | 2026-02-11 | 2026-08-23 |  |  |  |  |  |  |  |  |  |  |  |  |  |
|  | 1 | **Stormwater Utilities** |  | 2026-02-17 | 2026-08-23 |  |  |  |  |  |  |  |  |  |  |  |  |  |
|  | 2 | **Pipe Work** |  | 2026-02-17 | 2026-05-16 |  |  |  |  |  |  |  |  |  |  |  |  |  |
| CON-LEG101-LR-3650 |  | Excavation for Stormwater Utilities Network [Local – 06 ] | 10d | 2026-02-17 A | 2026-03-28 A | CON-LEG101-LR-3640 SS, CON-LEG101-SD-1000, CON-LEG101-LR-1990, CON-LEG101-EN-1780, CON-LEG101-EN-1790, CON-LEG101-EN-1800, CON-LEG101-EN-3440 | 100% |  | 2026-05-26 | 2026-06-11 |  |  | Stormwater Utilities - GRP Pipes - 400 mm Diameter Depth: 0.00 m - 1.50 m.; Stormwater Utilities - GRP Pipes - 400 mm Depth: 1.51m - 2.50m; Stormwater Utilities - GRP Pipes - 400 mm Depth exceeds 2.50m; Stormwater Utilities - GRP Pipes - 500 mm Depth: 0.00 m - 1.50 m.; Stormwater Utilities - GRP Pipes - 500 mm Depth: 3.51m - 4.50m; Stormwater Utilities - GRP Pipes - 500 mm Depth exceeds 4.50m; Stormwater Utilities - GRP Pipes - 600 mm Depth: 1.51m - 2.50m; Stormwater Utilities - GRP Pipes - 600 mm Depth: 2.51m - 3.50m; Stormwater Utilities - GRP Pipes - 600 mm Depth: 3.51m - 4.50m; Stormwater Utilities - GRP Pipes - 600 mm Depth exceeds 4.50m; Stormwater Utilities - GRP Pipes - 700 mm Depth: 1.51m - 2.50m; Stormwater Utilities - GRP Pipes - 700 mm Depth: 2.51m - 3.50m; Stormwater Utilities - GRP Pipes - 700 mm Depth exceeds 3.50m; Stormwater Utilities - GRP Pipes - 800 mm Depth: 1.51m - 2.50m; Stormwater Utilities - GRP Pipes - 800 mm Depth: 2.51m - 3.50m; Stormwater Utilities - GRP Pipes - 800 mm Depth exceeds 3.50m; Excavator [48 h]; Water Tanker [48 h]; Truck [96 h]; Crane [48 h]; Labor [200 h]; Driver [150 h]; Eq. Operator [100 h]; Stormwater Utilities - GRP Pipes - 500 mm Depth: 1.51m - 2.50m [36.92]; Stormwater Utilities - GRP Pipes - 500 mm Depth: 2.51m - 3.50m [15.41] | 36,326 | 36,326 | A14740 | 1 | L06 |
| CON-LEG101-LR-3750 |  | Granular bedding for Stormwater Utilities Network [Local – 06 ] | 4d | 2026-02-18 A | 2026-04-27 A | CON-LEG101-LR-3650 | 100% |  | 2026-06-11 | 2026-06-16 |  |  | Stormwater Utilities - GRP Pipes - 400 mm Diameter Depth: 0.00 m - 1.50 m.; Stormwater Utilities - GRP Pipes - 400 mm Depth: 1.51m - 2.50m; Stormwater Utilities - GRP Pipes - 400 mm Depth exceeds 2.50m; Stormwater Utilities - GRP Pipes - 500 mm Depth: 0.00 m - 1.50 m.; Stormwater Utilities - GRP Pipes - 500 mm Depth: 3.51m - 4.50m; Stormwater Utilities - GRP Pipes - 500 mm Depth exceeds 4.50m; Stormwater Utilities - GRP Pipes - 600 mm Depth: 1.51m - 2.50m; Stormwater Utilities - GRP Pipes - 600 mm Depth: 2.51m - 3.50m; Stormwater Utilities - GRP Pipes - 600 mm Depth: 3.51m - 4.50m; Stormwater Utilities - GRP Pipes - 600 mm Depth exceeds 4.50m; Stormwater Utilities - GRP Pipes - 700 mm Depth: 1.51m - 2.50m; Stormwater Utilities - GRP Pipes - 700 mm Depth: 2.51m - 3.50m; Stormwater Utilities - GRP Pipes - 700 mm Depth exceeds 3.50m; Stormwater Utilities - GRP Pipes - 800 mm Depth: 1.51m - 2.50m; Stormwater Utilities - GRP Pipes - 800 mm Depth: 2.51m - 3.50m; Stormwater Utilities - GRP Pipes - 800 mm Depth exceeds 3.50m; Loader [48 h]; Truck [48 h]; Driver [50 h]; Eq. Operator [50 h]; Stormwater Utilities - GRP Pipes - 500 mm Depth: 1.51m - 2.50m [9.23]; Stormwater Utilities - GRP Pipes - 500 mm Depth: 2.51m - 3.50m [3.85] | 9,079.5 | 9,079.5 | A14850 | 1 | L06 |
| CON-LEG101-LR-3850 |  | Installation of Pipe for Stormwater Utilities Network [Local – 06 ] | 10d | 2026-02-19 A | 2026-04-29 A | CON-LEG101-PR-2110, CON-LEG101-LR-3750, CON-LEG101-PR-1780 | 100% |  | 2026-06-16 | 2026-06-28 |  |  | Stormwater Utilities - GRP Pipes - 400 mm Diameter Depth: 0.00 m - 1.50 m.; Stormwater Utilities - GRP Pipes - 400 mm Depth: 1.51m - 2.50m; Stormwater Utilities - GRP Pipes - 400 mm Depth exceeds 2.50m; Stormwater Utilities - GRP Pipes - 500 mm Depth: 0.00 m - 1.50 m.; Stormwater Utilities - GRP Pipes - 500 mm Depth: 3.51m - 4.50m; Stormwater Utilities - GRP Pipes - 500 mm Depth exceeds 4.50m; Stormwater Utilities - GRP Pipes - 600 mm Depth: 1.51m - 2.50m; Stormwater Utilities - GRP Pipes - 600 mm Depth: 2.51m - 3.50m; Stormwater Utilities - GRP Pipes - 600 mm Depth: 3.51m - 4.50m; Stormwater Utilities - GRP Pipes - 600 mm Depth exceeds 4.50m; Stormwater Utilities - GRP Pipes - 700 mm Depth: 1.51m - 2.50m; Stormwater Utilities - GRP Pipes - 700 mm Depth: 2.51m - 3.50m; Stormwater Utilities - GRP Pipes - 700 mm Depth exceeds 3.50m; Stormwater Utilities - GRP Pipes - 800 mm Depth: 1.51m - 2.50m; Stormwater Utilities - GRP Pipes - 800 mm Depth: 2.51m - 3.50m; Stormwater Utilities - GRP Pipes - 800 mm Depth exceeds 3.50m; Excavator [48 h]; Crane [48 h]; Labor [150 h]; Skilled Labor [100 h]; Eq. Operator [100 h]; Plumber [50 h]; Pipe Fitter [50 h]; Stormwater Utilities - GRP Pipes - 500 mm Depth: 1.51m - 2.50m [83.07]; Stormwater Utilities - GRP Pipes - 500 mm Depth: 2.51m - 3.50m [34.67] | 81,731.5 | 81,731.5 | A14960 | 1 | L06 |
| CON-LEG101-LR-4050 |  | Granular Surround for Stormwater Utilities Network [Local – 06 ] | 8d | 2026-02-19 A | 2026-05-12 A | CON-LEG101-LR-3950, CON-LEG101-EN-3450 | 100% |  | 2026-07-07 | 2026-07-16 |  |  | Stormwater Utilities - GRP Pipes - 400 mm Diameter Depth: 0.00 m - 1.50 m.; Stormwater Utilities - GRP Pipes - 400 mm Depth: 1.51m - 2.50m; Stormwater Utilities - GRP Pipes - 400 mm Depth exceeds 2.50m; Stormwater Utilities - GRP Pipes - 500 mm Depth: 0.00 m - 1.50 m.; Stormwater Utilities - GRP Pipes - 500 mm Depth: 3.51m - 4.50m; Stormwater Utilities - GRP Pipes - 500 mm Depth exceeds 4.50m; Stormwater Utilities - GRP Pipes - 600 mm Depth: 1.51m - 2.50m; Stormwater Utilities - GRP Pipes - 600 mm Depth: 2.51m - 3.50m; Stormwater Utilities - GRP Pipes - 600 mm Depth: 3.51m - 4.50m; Stormwater Utilities - GRP Pipes - 600 mm Depth exceeds 4.50m; Stormwater Utilities - GRP Pipes - 700 mm Depth: 1.51m - 2.50m; Stormwater Utilities - GRP Pipes - 700 mm Depth: 2.51m - 3.50m; Stormwater Utilities - GRP Pipes - 700 mm Depth exceeds 3.50m; Stormwater Utilities - GRP Pipes - 800 mm Depth: 1.51m - 2.50m; Stormwater Utilities - GRP Pipes - 800 mm Depth: 2.51m - 3.50m; Stormwater Utilities - GRP Pipes - 800 mm Depth exceeds 3.50m; Loader [48 h]; Truck [48 h]; Driver [50 h]; Eq. Operator [50 h]; Stormwater Utilities - GRP Pipes - 500 mm Depth: 1.51m - 2.50m [9.23]; Stormwater Utilities - GRP Pipes - 500 mm Depth: 2.51m - 3.50m [3.85] | 9,079.5 | 9,079.5 | A15180 | 1 | L06 |
| CON-LEG101-LR-3950 |  | Testing for Stormwater Utilities Network [Local – 06 ] | 8d | 2026-04-11 A | 2026-05-11 A | CON-LEG101-LR-3850 | 100% |  | 2026-06-21 | 2026-06-30 |  |  | Stormwater Utilities - GRP Pipes - 400 mm Diameter Depth: 0.00 m - 1.50 m.; Stormwater Utilities - GRP Pipes - 400 mm Depth: 1.51m - 2.50m; Stormwater Utilities - GRP Pipes - 400 mm Depth exceeds 2.50m; Stormwater Utilities - GRP Pipes - 500 mm Depth: 0.00 m - 1.50 m.; Stormwater Utilities - GRP Pipes - 500 mm Depth: 3.51m - 4.50m; Stormwater Utilities - GRP Pipes - 500 mm Depth exceeds 4.50m; Stormwater Utilities - GRP Pipes - 600 mm Depth: 1.51m - 2.50m; Stormwater Utilities - GRP Pipes - 600 mm Depth: 2.51m - 3.50m; Stormwater Utilities - GRP Pipes - 600 mm Depth: 3.51m - 4.50m; Stormwater Utilities - GRP Pipes - 600 mm Depth exceeds 4.50m; Stormwater Utilities - GRP Pipes - 700 mm Depth: 1.51m - 2.50m; Stormwater Utilities - GRP Pipes - 700 mm Depth: 2.51m - 3.50m; Stormwater Utilities - GRP Pipes - 700 mm Depth exceeds 3.50m; Stormwater Utilities - GRP Pipes - 800 mm Depth: 1.51m - 2.50m; Stormwater Utilities - GRP Pipes - 800 mm Depth: 2.51m - 3.50m; Stormwater Utilities - GRP Pipes - 800 mm Depth exceeds 3.50m; Labor [200 h]; Skilled Labor [100 h]; Pipe Fitter [100 h]; Stormwater Utilities - GRP Pipes - 500 mm Depth: 1.51m - 2.50m [18.46]; Stormwater Utilities - GRP Pipes - 500 mm Depth: 2.51m - 3.50m [7.71] | 18,167 | 18,167 | A15070 | 1 | L06 |
| CON-LEG101-LR-4160 |  | Installation of Micron Marker Magnetic Tape [Local – 06 ] | 2d | 2026-04-20 A | 2026-05-13 A | CON-LEG101-LR-4050 | 100% |  | 2026-07-08 | 2026-07-11 |  |  | Stormwater Utilities - GRP Pipes - 400 mm Diameter Depth: 0.00 m - 1.50 m.; Stormwater Utilities - GRP Pipes - 400 mm Depth: 1.51m - 2.50m; Stormwater Utilities - GRP Pipes - 400 mm Depth exceeds 2.50m; Stormwater Utilities - GRP Pipes - 500 mm Depth: 0.00 m - 1.50 m.; Stormwater Utilities - GRP Pipes - 500 mm Depth: 3.51m - 4.50m; Stormwater Utilities - GRP Pipes - 500 mm Depth exceeds 4.50m; Stormwater Utilities - GRP Pipes - 600 mm Depth: 1.51m - 2.50m; Stormwater Utilities - GRP Pipes - 600 mm Depth: 2.51m - 3.50m; Stormwater Utilities - GRP Pipes - 600 mm Depth: 3.51m - 4.50m; Stormwater Utilities - GRP Pipes - 600 mm Depth exceeds 4.50m; Stormwater Utilities - GRP Pipes - 700 mm Depth: 1.51m - 2.50m; Stormwater Utilities - GRP Pipes - 700 mm Depth: 2.51m - 3.50m; Stormwater Utilities - GRP Pipes - 700 mm Depth exceeds 3.50m; Stormwater Utilities - GRP Pipes - 800 mm Depth: 1.51m - 2.50m; Stormwater Utilities - GRP Pipes - 800 mm Depth: 2.51m - 3.50m; Stormwater Utilities - GRP Pipes - 800 mm Depth exceeds 3.50m; Labor [100 h]; Stormwater Utilities - GRP Pipes - 500 mm Depth: 1.51m - 2.50m [9.23]; Stormwater Utilities - GRP Pipes - 500 mm Depth: 2.51m - 3.50m [3.85] | 9,079.5 | 9,079.5 | A15290 | 1 | L06 |
| CON-LEG101-LR-4280 |  | Backfilling to Subgrade Elevation [Local – 06 ] | 7d | 2026-04-22 A | 2026-05-16 A | CON-LEG101-LR-4160, CON-LEG101-EN-3440 | 100% |  | 2026-07-11 | 2026-07-19 |  |  | Stormwater Utilities - GRP Pipes - 400 mm Diameter Depth: 0.00 m - 1.50 m.; Stormwater Utilities - GRP Pipes - 400 mm Depth: 1.51m - 2.50m; Stormwater Utilities - GRP Pipes - 400 mm Depth exceeds 2.50m; Stormwater Utilities - GRP Pipes - 500 mm Depth: 0.00 m - 1.50 m.; Stormwater Utilities - GRP Pipes - 500 mm Depth: 3.51m - 4.50m; Stormwater Utilities - GRP Pipes - 500 mm Depth exceeds 4.50m; Stormwater Utilities - GRP Pipes - 600 mm Depth: 1.51m - 2.50m; Stormwater Utilities - GRP Pipes - 600 mm Depth: 2.51m - 3.50m; Stormwater Utilities - GRP Pipes - 600 mm Depth: 3.51m - 4.50m; Stormwater Utilities - GRP Pipes - 600 mm Depth exceeds 4.50m; Stormwater Utilities - GRP Pipes - 700 mm Depth: 1.51m - 2.50m; Stormwater Utilities - GRP Pipes - 700 mm Depth: 2.51m - 3.50m; Stormwater Utilities - GRP Pipes - 700 mm Depth exceeds 3.50m; Stormwater Utilities - GRP Pipes - 800 mm Depth: 1.51m - 2.50m; Stormwater Utilities - GRP Pipes - 800 mm Depth: 2.51m - 3.50m; Stormwater Utilities - GRP Pipes - 800 mm Depth exceeds 3.50m; Excavator [48 h]; Water Tanker [24 h]; Road Roller [48 h]; Bucket [48 h]; Compactor [48 h]; Labor [100 h]; Driver [50 h]; Eq. Operator [200 h]; Stormwater Utilities - GRP Pipes - 500 mm Depth: 1.51m - 2.50m [18.46]; Stormwater Utilities - GRP Pipes - 500 mm Depth: 2.51m - 3.50m [7.71] | 18,167 | 18,167 | A15400 | 1 | L06 |
|  | 1 | **Manhole** |  | 2026-02-17 | 2026-08-22 |  |  |  |  |  |  |  |  |  |  |  |  |  |
| CON-LEG101-LR-11540 |  | Excavation of Inlet Manholes [Local – 06 ] | 10d | 2026-02-17 A | 2026-03-28 A | CON-LEG101-LR-3650 | 100% |  | 2026-06-11 | 2026-06-23 |  |  | Stormwater Utilities - (ring 1200 mm internal dia.) MH depth 1.51 - 2.50m [0.7]; Stormwater Utilities - (ring 1200 mm internal dia.) MH depth 2.51 - 3.50m; Stormwater Utilities - (ring 1200 mm internal dia.) MH depth 3.51 - 4.50m; Stormwater Utilities - (ring 1200 mm internal dia.) MH depth exceeds 4.50m; Stormwater Utilities - (ring 1500 mm internal dia.) MH depth exceeds 3.50m; Stormwater Utilities - (ring 1500 mm internal dia.) MH depth 1.51 - 2.50m; Stormwater Utilities - (ring 1500 mm internal dia.) MH depth 2.51 - 3.50m | 11,550 | 11,550 |  | 1 | L06 |
| CON-LEG101-LR-11550 |  | PC of Inlet Manholes [Local – 06 ] | 5d | 2026-03-29 A | 2026-03-30 A | CON-LEG101-LR-11540 | 100% |  | 2026-06-11 | 2026-06-17 |  |  | Stormwater Utilities - (ring 1200 mm internal dia.) MH depth 1.51 - 2.50m [0.47]; Stormwater Utilities - (ring 1200 mm internal dia.) MH depth 2.51 - 3.50m; Stormwater Utilities - (ring 1200 mm internal dia.) MH depth 3.51 - 4.50m; Stormwater Utilities - (ring 1200 mm internal dia.) MH depth exceeds 4.50m; Stormwater Utilities - (ring 1500 mm internal dia.) MH depth exceeds 3.50m; Stormwater Utilities - (ring 1500 mm internal dia.) MH depth 1.51 - 2.50m; Stormwater Utilities - (ring 1500 mm internal dia.) MH depth 2.51 - 3.50m | 7,755 | 7,755 |  | 1 | L06 |
| CON-LEG101-LR-4390 |  | Installation of Inlet Manholes [Local – 06 ] | 10d | 2026-04-01 A | 2026-06-03 A | CON-LEG101-LR-11550, CON-LEG101-LR-3850, CON-LEG101-PR-1980 | 100% |  | 2026-06-21 | 2026-07-02 |  |  | Stormwater Utilities - (ring 1200 mm internal dia.) MH depth 2.51 - 3.50m; Stormwater Utilities - (ring 1200 mm internal dia.) MH depth 3.51 - 4.50m; Stormwater Utilities - (ring 1200 mm internal dia.) MH depth exceeds 4.50m; Stormwater Utilities - (ring 1500 mm internal dia.) MH depth exceeds 3.50m; Stormwater Utilities - (ring 1500 mm internal dia.) MH depth 1.51 - 2.50m; Stormwater Utilities - (ring 1500 mm internal dia.) MH depth 2.51 - 3.50m; Stormwater Utilities - (ring 1200 mm internal dia.) MH depth 1.51 - 2.50m [2.1]; Excavator [22.8 h]; Bucket [48 h]; Compactor [48 h]; Labor [100 h]; Eq. Operator [150 h]; Pipe Fitter [100 h] | 34,650 | 34,650 | A15620 | 1 | L06 |
| CON-LEG101-LR-11560 |  | Backfilling of Inlet Manholes [Local – 06 ] | 8d | 2026-04-22 A | 2026-06-06 A | CON-LEG101-LR-4390 | 100% |  | 2026-07-09 | 2026-07-19 |  |  | Stormwater Utilities - (ring 1200 mm internal dia.) MH depth 1.51 - 2.50m [0.93]; Stormwater Utilities - (ring 1200 mm internal dia.) MH depth 2.51 - 3.50m; Stormwater Utilities - (ring 1200 mm internal dia.) MH depth 3.51 - 4.50m; Stormwater Utilities - (ring 1200 mm internal dia.) MH depth exceeds 4.50m; Stormwater Utilities - (ring 1500 mm internal dia.) MH depth exceeds 3.50m; Stormwater Utilities - (ring 1500 mm internal dia.) MH depth 1.51 - 2.50m; Stormwater Utilities - (ring 1500 mm internal dia.) MH depth 2.51 - 3.50m | 15,345 | 15,345 |  | 1 | L06 |
| CON-LEG101-LR-11570 |  | Finishing and Testing of Inlet Manholes [Local – 06 ] | 10d | 2026-08-01 A | 2026-08-22 A | CON-LEG101-LR-11560, CON-LEG101-LR-4390, CON-LEG101-LR-11480 | 100% |  | 2026-10-22 | 2026-11-03 |  |  | Stormwater Utilities - (ring 1200 mm internal dia.) MH depth 1.51 - 2.50m [0.47]; Stormwater Utilities - (ring 1200 mm internal dia.) MH depth 2.51 - 3.50m; Stormwater Utilities - (ring 1200 mm internal dia.) MH depth 3.51 - 4.50m; Stormwater Utilities - (ring 1200 mm internal dia.) MH depth exceeds 4.50m; Stormwater Utilities - (ring 1500 mm internal dia.) MH depth exceeds 3.50m; Stormwater Utilities - (ring 1500 mm internal dia.) MH depth 1.51 - 2.50m; Stormwater Utilities - (ring 1500 mm internal dia.) MH depth 2.51 - 3.50m | 7,755 | 7,755 |  | 1 | L06 |

| ID | WBS | Activity | Duration | Start | Finish | Predecessors | Complete | Planned start | Planned finish | Resources | Cost | Actual cost | % A | JEDDAH 1 - Area Name | Mapping Sheet Activity ID |
| --- | --- | --- | --- | --- | --- | --- | --- | --- | --- | --- | --- | --- | --- | --- | --- |
|  | 3 | **Concrete Chambers/Outfalls** |  | 2026-05-09 | 2026-08-23 |  |  |  |  |  |  |  |  |  |  |
| CON-LEG101-LR-11580 |  | Excavation of Concrete chambers [Local – 06 ] | 6d | 2026-05-09 A | 2026-05-10 A | CON-LEG101-LR-4390 | 100% | 2026-07-07 | 2026-07-14 | Single Catch basin as per drawings [0.7]; Double Catch basin as per drawings [0.14]; Curb inlet catch basin [0.43] | 11,900 | 11,900 | 1 | L06 |  |
| CON-LEG101-LR-11590 |  | PC of Concrete chambers [Local – 06 ] | 2d | 2026-05-11 A | 2026-05-11 A | CON-LEG101-LR-11580 | 100% | 2026-07-14 | 2026-07-16 | Single Catch basin as per drawings [0.46]; Double Catch basin as per drawings [0.09]; Curb inlet catch basin [0.29] | 7,900 | 7,900 | 1 | L06 |  |
| CON-LEG101-LR-4490 |  | Installation of Concrete chambers [Local – 06 ] | 6d | 2026-05-12 A | 2026-05-14 A | CON-LEG101-LR-11590, CON-LEG101-LR-3850, CON-LEG101-LR-4390, CON-LEG101-PR-1990 | 100% | 2026-07-16 | 2026-07-23 | Single Catch basin as per drawings [2.09]; Double Catch basin as per drawings [0.42]; Curb inlet catch basin [1.29]; Excavator [48 h]; Labor [100 h]; Skilled Labor [50 h]; Eq. Operator [50 h]; Pipe Fitter [50 h] | 35,640 | 35,640 | 1 | L06 | A15770 |
| CON-LEG101-LR-11600 |  | Installation UPVC Pipes to Concrete chambers [Local – 06 ] | 4d | 2026-05-13 A | 2026-05-16 A | CON-LEG101-LR-11580, CON-LEG101-LR-4490 | 100% | 2026-07-23 | 2026-07-28 | Stormwater Utilities - PVC Pipes - 300 mm Diameter Depth: 0.00 m - 1.50 m. [56.02]; Stormwater Utilities - PVC Pipes - 300 mm Diameter Depth: 1.51m - 2.50m [82.06]; Stormwater Utilities - PVC Pipes - 500 mm Depth: 1.51m - 2.50m [25.35]; Stormwater Utilities - PVC Pipes - 300 mm Diameter Depth exceeds 2.50m; Stormwater Utilities - PVC Pipes - 400 mm Diameter Depth: 0.00 m - 1.50 m.; Stormwater Utilities - PVC Pipes - 500 mm Depth: 0.00 m - 1.50 m.; Stormwater Utilities - PVC Pipes - 400 mm Diameter Depth: 1.51m - 2.50m; Stormwater Utilities - PVC Pipes - 400 mm Diameter Depth exceeds 2.50m; Stormwater Utilities - PVC Pipes - 500 mm Depth exceeds 2.50m | 77,587 | 77,587 | 1 | L06 |  |
| CON-LEG101-LR-11610 |  | Backfilling to Concrete chambers [Local – 06 ] | 3d | 2026-05-17 A | 2026-05-21 A | CON-LEG101-LR-11600, CON-LEG101-LR-4490 | 100% | 2026-07-28 | 2026-08-01 | Single Catch basin as per drawings [0.93]; Double Catch basin as per drawings [0.19]; Curb inlet catch basin [0.57] | 15,840 | 15,840 | 1 | L06 |  |
| CON-LEG101-LR-11620 |  | FInishing and Testing of Concrete chambers [Local – 06 ] | 12d | 2026-08-02 A | 2026-08-23 A | CON-LEG101-LR-11600, CON-LEG101-LR-11610, CON-LEG101-LR-4490, CON-LEG101-LR-11530 | 100% | 2026-11-02 | 2026-11-16 | Single Catch basin as per drawings [0.46]; Double Catch basin as per drawings [0.09]; Curb inlet catch basin [0.29] | 7,900 | 7,900 | 1 | L06 |  |
|  | 4 | **Sanitary Sewerage** |  | 2026-02-11 | 2026-08-23 |  |  |  |  |  |  |  |  |  |  |
|  | 2 | **Pipe Work** |  | 2026-02-11 | 2026-03-29 |  |  |  |  |  |  |  |  |  |  |
| CON-LEG101-LR-2840 |  | Excavation for Sanitary Sewerage Network [Local – 06 ] | 6d | 2026-02-11 A | 2026-02-21 A | CON-LEG101-LR-3650, CON-LEG101-EN-1750, CON-LEG101-EN-1760, CON-LEG101-EN-1770, CON-LEG101-EN-3440 | 100% | 2026-06-14 | 2026-06-21 | Sanitary Sewerage 450mm Depth: 3.51m - 4.50m; Sanitary Sewerage 450mm Depth exceeds 4.50m; Sanitary Sewerage 150mm Diameter Depth: 0.00 m - 1.50 m.; Sanitary Sewerage 150mm Diameter Depth: 1.51m - 2.50m; Sanitary Sewerage 150mm Diameter Depth exceeds 2.50m; Sanitary Sewerage 200mm Depth exceeds 3.50m; Sanitary Sewerage 300mm Depth: 0.00 m - 1.50 m.; Sanitary Sewerage 300mm Depth: 1.51m - 2.50m; Sanitary Sewerage 300mm Depth: 2.51m - 3.50m; Sanitary Sewerage 300mm Depth exceeds 3.50m; Sanitary Sewerage 350mm Depth: 0.00 m - 1.50 m.; Sanitary Sewerage 350mm Depth: 1.51m - 2.50m; Sanitary Sewerage 350mm Depth: 2.51m - 3.50m; Sanitary Sewerage 350mm Depth exceeds 3.50m; Sanitary Sewerage 450mm Depth: 0.00 m - 1.50 m.; Sanitary Sewerage 450mm Depth: 1.51m - 2.50m; Sanitary Sewerage 450mm Depth: 2.51m - 3.50m; Excavator [48 h]; Water Tanker [48 h]; Truck [96 h]; Crane [48 h]; Labor [200 h]; Driver [150 h]; Eq. Operator [100 h]; Sanitary Sewerage 200mm Depth: 0.00 m - 1.50 m. [13.8]; Sanitary Sewerage 200mm Depth: 1.51m - 2.50m [23.44]; Sanitary Sewerage 200mm Depth: 2.51m - 3.50m [11.66] | 17,867 | 17,867 | 1 | L06 | A13270 |
| CON-LEG101-LR-2930 |  | Granular bedding for Sanitary Sewerage Network [Local – 06 ] | 4d | 2026-02-12 A | 2026-03-04 A | CON-LEG101-LR-2840 | 100% | 2026-06-21 | 2026-06-25 | Sanitary Sewerage 450mm Depth: 3.51m - 4.50m; Sanitary Sewerage 450mm Depth exceeds 4.50m; Sanitary Sewerage 150mm Diameter Depth: 0.00 m - 1.50 m.; Sanitary Sewerage 150mm Diameter Depth: 1.51m - 2.50m; Sanitary Sewerage 150mm Diameter Depth exceeds 2.50m; Sanitary Sewerage 200mm Depth exceeds 3.50m; Sanitary Sewerage 300mm Depth: 0.00 m - 1.50 m.; Sanitary Sewerage 300mm Depth: 1.51m - 2.50m; Sanitary Sewerage 300mm Depth: 2.51m - 3.50m; Sanitary Sewerage 300mm Depth exceeds 3.50m; Sanitary Sewerage 350mm Depth: 0.00 m - 1.50 m.; Sanitary Sewerage 350mm Depth: 1.51m - 2.50m; Sanitary Sewerage 350mm Depth: 2.51m - 3.50m; Sanitary Sewerage 350mm Depth exceeds 3.50m; Sanitary Sewerage 450mm Depth: 0.00 m - 1.50 m.; Sanitary Sewerage 450mm Depth: 1.51m - 2.50m; Sanitary Sewerage 450mm Depth: 2.51m - 3.50m; Loader [48 h]; Truck [48 h]; Driver [50 h]; Eq. Operator [50 h]; Sanitary Sewerage 200mm Depth: 0.00 m - 1.50 m. [3.46]; Sanitary Sewerage 200mm Depth: 1.51m - 2.50m [5.86]; Sanitary Sewerage 200mm Depth: 2.51m - 3.50m [2.91] | 4,467.7 | 4,467.7 | 1 | L06 | A13370 |
| CON-LEG101-LR-3020 |  | Installation of Pipe for Sanitary Sewerage Network [Local – 06 ] | 8d | 2026-02-14 A | 2026-03-12 A | CON-LEG101-PR-2560, CON-LEG101-LR-2930, CON-LEG101-PR-1720 | 100% | 2026-06-25 | 2026-07-05 | Sanitary Sewerage 450mm Depth: 3.51m - 4.50m; Sanitary Sewerage 450mm Depth exceeds 4.50m; Sanitary Sewerage 150mm Diameter Depth: 0.00 m - 1.50 m.; Sanitary Sewerage 150mm Diameter Depth: 1.51m - 2.50m; Sanitary Sewerage 150mm Diameter Depth exceeds 2.50m; Sanitary Sewerage 200mm Depth exceeds 3.50m; Sanitary Sewerage 300mm Depth: 0.00 m - 1.50 m.; Sanitary Sewerage 300mm Depth: 1.51m - 2.50m; Sanitary Sewerage 300mm Depth: 2.51m - 3.50m; Sanitary Sewerage 300mm Depth exceeds 3.50m; Sanitary Sewerage 350mm Depth: 0.00 m - 1.50 m.; Sanitary Sewerage 350mm Depth: 1.51m - 2.50m; Sanitary Sewerage 350mm Depth: 2.51m - 3.50m; Sanitary Sewerage 350mm Depth exceeds 3.50m; Sanitary Sewerage 450mm Depth: 0.00 m - 1.50 m.; Sanitary Sewerage 450mm Depth: 1.51m - 2.50m; Sanitary Sewerage 450mm Depth: 2.51m - 3.50m; Excavator [48 h]; Crane [48 h]; Labor [150 h]; Skilled Labor [100 h]; Eq. Operator [100 h]; Plumber [50 h]; Pipe Fitter [50 h]; Sanitary Sewerage 200mm Depth: 0.00 m - 1.50 m. [31.14]; Sanitary Sewerage 200mm Depth: 1.51m - 2.50m [52.73]; Sanitary Sewerage 200mm Depth: 2.51m - 3.50m [26.24] | 40,228.3 | 40,228.3 | 1 | L06 | A13470 |
| CON-LEG101-LR-3300 |  | Granular Surround for Sanitary Sewerage Network [Local – 06 ] | 4d | 2026-02-15 A | 2026-03-14 A | CON-LEG101-LR-3210, CON-LEG101-EN-3450 | 100% | 2026-06-29 | 2026-07-04 | Sanitary Sewerage 450mm Depth: 3.51m - 4.50m; Sanitary Sewerage 450mm Depth exceeds 4.50m; Sanitary Sewerage 150mm Diameter Depth: 0.00 m - 1.50 m.; Sanitary Sewerage 150mm Diameter Depth: 1.51m - 2.50m; Sanitary Sewerage 150mm Diameter Depth exceeds 2.50m; Sanitary Sewerage 200mm Depth exceeds 3.50m; Sanitary Sewerage 300mm Depth: 0.00 m - 1.50 m.; Sanitary Sewerage 300mm Depth: 1.51m - 2.50m; Sanitary Sewerage 300mm Depth: 2.51m - 3.50m; Sanitary Sewerage 300mm Depth exceeds 3.50m; Sanitary Sewerage 350mm Depth: 0.00 m - 1.50 m.; Sanitary Sewerage 350mm Depth: 1.51m - 2.50m; Sanitary Sewerage 350mm Depth: 2.51m - 3.50m; Sanitary Sewerage 350mm Depth exceeds 3.50m; Sanitary Sewerage 450mm Depth: 0.00 m - 1.50 m.; Sanitary Sewerage 450mm Depth: 1.51m - 2.50m; Sanitary Sewerage 450mm Depth: 2.51m - 3.50m; Loader [48 h]; Truck [48 h]; Driver [50 h]; Eq. Operator [50 h]; Sanitary Sewerage 200mm Depth: 0.00 m - 1.50 m. [3.46]; Sanitary Sewerage 200mm Depth: 1.51m - 2.50m [5.86]; Sanitary Sewerage 200mm Depth: 2.51m - 3.50m [2.91] | 4,467.7 | 4,467.7 | 1 | L06 | A13800 |
| CON-LEG101-LR-3110 |  | Testing for Sanitary Sewerage Network [Local – 06 ] | 4d | 2026-03-14 A | 2026-03-15 A | CON-LEG101-LR-3020 | 100% | 2026-06-10 | 2026-06-15 | Sanitary Sewerage 450mm Depth: 3.51m - 4.50m; Sanitary Sewerage 450mm Depth exceeds 4.50m; Sanitary Sewerage 150mm Diameter Depth: 0.00 m - 1.50 m.; Sanitary Sewerage 150mm Diameter Depth: 1.51m - 2.50m; Sanitary Sewerage 150mm Diameter Depth exceeds 2.50m; Sanitary Sewerage 200mm Depth exceeds 3.50m; Sanitary Sewerage 300mm Depth: 0.00 m - 1.50 m.; Sanitary Sewerage 300mm Depth: 1.51m - 2.50m; Sanitary Sewerage 300mm Depth: 2.51m - 3.50m; Sanitary Sewerage 300mm Depth exceeds 3.50m; Sanitary Sewerage 350mm Depth: 0.00 m - 1.50 m.; Sanitary Sewerage 350mm Depth: 1.51m - 2.50m; Sanitary Sewerage 350mm Depth: 2.51m - 3.50m; Sanitary Sewerage 350mm Depth exceeds 3.50m; Sanitary Sewerage 450mm Depth: 0.00 m - 1.50 m.; Sanitary Sewerage 450mm Depth: 1.51m - 2.50m; Sanitary Sewerage 450mm Depth: 2.51m - 3.50m; Labor [200 h]; Skilled Labor [100 h]; Pipe Fitter [100 h]; Sanitary Sewerage 200mm Depth: 0.00 m - 1.50 m. [6.92]; Sanitary Sewerage 200mm Depth: 1.51m - 2.50m [11.72]; Sanitary Sewerage 200mm Depth: 2.51m - 3.50m [5.83] | 8,939.9 | 8,939.9 | 1 | L06 | A13570 |
| CON-LEG101-LR-3390 |  | Installation of Micron Marker Magnetic Tape [Local – 06 ] | 2d | 2026-03-17 A | 2026-03-26 A | CON-LEG101-LR-3300 | 100% | 2026-06-16 | 2026-06-18 | Sanitary Sewerage 450mm Depth: 3.51m - 4.50m; Sanitary Sewerage 450mm Depth exceeds 4.50m; Sanitary Sewerage 150mm Diameter Depth: 0.00 m - 1.50 m.; Sanitary Sewerage 150mm Diameter Depth: 1.51m - 2.50m; Sanitary Sewerage 150mm Diameter Depth exceeds 2.50m; Sanitary Sewerage 200mm Depth exceeds 3.50m; Sanitary Sewerage 300mm Depth: 0.00 m - 1.50 m.; Sanitary Sewerage 300mm Depth: 1.51m - 2.50m; Sanitary Sewerage 300mm Depth: 2.51m - 3.50m; Sanitary Sewerage 300mm Depth exceeds 3.50m; Sanitary Sewerage 350mm Depth: 0.00 m - 1.50 m.; Sanitary Sewerage 350mm Depth: 1.51m - 2.50m; Sanitary Sewerage 350mm Depth: 2.51m - 3.50m; Sanitary Sewerage 350mm Depth exceeds 3.50m; Sanitary Sewerage 450mm Depth: 0.00 m - 1.50 m.; Sanitary Sewerage 450mm Depth: 1.51m - 2.50m; Sanitary Sewerage 450mm Depth: 2.51m - 3.50m; Labor [100 h]; Sanitary Sewerage 200mm Depth: 0.00 m - 1.50 m. [3.46]; Sanitary Sewerage 200mm Depth: 1.51m - 2.50m [5.86]; Sanitary Sewerage 200mm Depth: 2.51m - 3.50m [2.91] | 4,467.7 | 4,467.7 | 1 | L06 | A13900 |
| CON-LEG101-LR-3210 |  | Concrete encasement, pipe dia 200 and 350 mm [Local – 06 ] | 4d | 2026-03-25 A | 2026-03-25 A | CON-LEG101-LR-3110, CON-LEG101-EN-3450, CON-LEG101-PR-1430 | 100% | 2026-06-13 | 2026-06-17 | Sanitary Sewerage Concrete encasement pipe dia 350 mm; Sanitary Sewerage - Concrete encasement pipe dia 200 mm [201.8]; Labor [200 h]; Carpenter [50 h]; Mason [100 h] | 44,396 | 44,396 | 1 | L06 | A13710 |
| CON-LEG101-LR-3480 |  | Backfilling to Subgrade Elevation [Local – 06 ] | 4d | 2026-03-28 A | 2026-03-29 A | CON-LEG101-LR-3390, CON-LEG101-EN-3440 | 100% | 2026-06-18 | 2026-06-23 | Sanitary Sewerage 450mm Depth: 3.51m - 4.50m; Sanitary Sewerage 450mm Depth exceeds 4.50m; Sanitary Sewerage 150mm Diameter Depth: 0.00 m - 1.50 m.; Sanitary Sewerage 150mm Diameter Depth: 1.51m - 2.50m; Sanitary Sewerage 150mm Diameter Depth exceeds 2.50m; Sanitary Sewerage 200mm Depth exceeds 3.50m; Sanitary Sewerage 300mm Depth: 0.00 m - 1.50 m.; Sanitary Sewerage 300mm Depth: 1.51m - 2.50m; Sanitary Sewerage 300mm Depth: 2.51m - 3.50m; Sanitary Sewerage 300mm Depth exceeds 3.50m; Sanitary Sewerage 350mm Depth: 0.00 m - 1.50 m.; Sanitary Sewerage 350mm Depth: 1.51m - 2.50m; Sanitary Sewerage 350mm Depth: 2.51m - 3.50m; Sanitary Sewerage 350mm Depth exceeds 3.50m; Sanitary Sewerage 450mm Depth: 0.00 m - 1.50 m.; Sanitary Sewerage 450mm Depth: 1.51m - 2.50m; Sanitary Sewerage 450mm Depth: 2.51m - 3.50m; Excavator [32 h]; Water Tanker [32 h]; Road Roller [48 h]; Bucket [48 h]; Compactor [48 h]; Labor [100 h]; Driver [50 h]; Eq. Operator [200 h]; Sanitary Sewerage 200mm Depth: 0.00 m - 1.50 m. [6.92]; Sanitary Sewerage 200mm Depth: 1.51m - 2.50m [11.72]; Sanitary Sewerage 200mm Depth: 2.51m - 3.50m [5.83] | 8,939.9 | 8,939.9 | 1 | L06 | A14000 |
|  | 1 | **Manhole** |  | 2026-02-11 | 2026-08-23 |  |  |  |  |  |  |  |  |  |  |
| CON-LEG101-LR-3560 |  | Installation of Fiberglass Manholes [Local – 06 ] | 21d | 2026-02-11 A | 2026-08-23 A | CON-LEG101-PR-2570, CON-LEG101-LR-3020, CON-LEG101-PR-1750 | 100% | 2026-07-05 | 2026-07-29 | Sanitary Sewerage MH depth 1.51 - 2.50 m; Sanitary Sewerage MH depth 1.51 - 2.50 m with back drop; Sanitary Sewerage MH depth 2.51 - 3.50 m; Sanitary Sewerage MH depth 2.51 - 3.50 m with back drop; Sanitary Sewerage MH depth 3.51 - 4.50 m; Sanitary Sewerage MH depth exceeds 3.50 m with back drop; Sanitary Sewerage MH depth exceeds 4.50 m; Sanitary Sewerage MH depth 0.00 m - 1.50 m. [3.35]; Excavator [30 h]; Bucket [48 h]; Compactor [48 h]; Labor [100 h]; Eq. Operator [150 h]; Pipe Fitter [100 h] | 53,600 | 53,600 | 1 | L06 | A14210 |
|  | 7 | **Local – 07** |  | 2026-02-18 | 2026-08-23 |  |  |  |  |  |  |  |  |  |  |
|  | 1 | **Stormwater Utilities** |  | 2026-02-18 | 2026-08-23 |  |  |  |  |  |  |  |  |  |  |
|  | 2 | **Pipe Work** |  | 2026-02-18 | 2026-04-09 |  |  |  |  |  |  |  |  |  |  |
| CON-LEG101-LR-3660 |  | Excavation for Stormwater Utilities Network [Local – 07 ] | 3d | 2026-02-18 A | 2026-02-21 A | CON-LEG101-SD-1000, CON-LEG101-LR-4230, CON-LEG101-LR-2080, CON-LEG101-EN-1780, CON-LEG101-EN-1790, CON-LEG101-EN-1800, CON-LEG101-EN-3440 | 100% | 2026-05-13 | 2026-05-17 | Stormwater Utilities - GRP Pipes - 400 mm Diameter Depth: 0.00 m - 1.50 m.; Stormwater Utilities - GRP Pipes - 400 mm Depth: 1.51m - 2.50m; Stormwater Utilities - GRP Pipes - 400 mm Depth exceeds 2.50m; Stormwater Utilities - GRP Pipes - 500 mm Depth: 0.00 m - 1.50 m.; Stormwater Utilities - GRP Pipes - 500 mm Depth: 3.51m - 4.50m; Stormwater Utilities - GRP Pipes - 500 mm Depth exceeds 4.50m; Stormwater Utilities - GRP Pipes - 600 mm Depth: 1.51m - 2.50m; Stormwater Utilities - GRP Pipes - 600 mm Depth: 2.51m - 3.50m; Stormwater Utilities - GRP Pipes - 600 mm Depth: 3.51m - 4.50m; Stormwater Utilities - GRP Pipes - 600 mm Depth exceeds 4.50m; Stormwater Utilities - GRP Pipes - 700 mm Depth: 1.51m - 2.50m; Stormwater Utilities - GRP Pipes - 700 mm Depth: 2.51m - 3.50m; Stormwater Utilities - GRP Pipes - 700 mm Depth exceeds 3.50m; Stormwater Utilities - GRP Pipes - 800 mm Depth: 1.51m - 2.50m; Stormwater Utilities - GRP Pipes - 800 mm Depth: 2.51m - 3.50m; Stormwater Utilities - GRP Pipes - 800 mm Depth exceeds 3.50m; Excavator [48 h]; Water Tanker [48 h]; Truck [96 h]; Crane [48 h]; Labor [200 h]; Driver [150 h]; Eq. Operator [100 h]; Stormwater Utilities - GRP Pipes - 500 mm Depth: 1.51m - 2.50m [5.54]; Stormwater Utilities - GRP Pipes - 500 mm Depth: 2.51m - 3.50m [2.31] | 5,449 | 5,449 | 1 | L07 | A14750 |
| CON-LEG101-LR-3760 |  | Granular bedding for Stormwater Utilities Network [Local – 07 ] | 2d | 2026-02-22 A | 2026-02-22 A | CON-LEG101-LR-3660 | 100% | 2026-05-17 | 2026-05-19 | Stormwater Utilities - GRP Pipes - 400 mm Diameter Depth: 0.00 m - 1.50 m.; Stormwater Utilities - GRP Pipes - 400 mm Depth: 1.51m - 2.50m; Stormwater Utilities - GRP Pipes - 400 mm Depth exceeds 2.50m; Stormwater Utilities - GRP Pipes - 500 mm Depth: 0.00 m - 1.50 m.; Stormwater Utilities - GRP Pipes - 500 mm Depth: 3.51m - 4.50m; Stormwater Utilities - GRP Pipes - 500 mm Depth exceeds 4.50m; Stormwater Utilities - GRP Pipes - 600 mm Depth: 1.51m - 2.50m; Stormwater Utilities - GRP Pipes - 600 mm Depth: 2.51m - 3.50m; Stormwater Utilities - GRP Pipes - 600 mm Depth: 3.51m - 4.50m; Stormwater Utilities - GRP Pipes - 600 mm Depth exceeds 4.50m; Stormwater Utilities - GRP Pipes - 700 mm Depth: 1.51m - 2.50m; Stormwater Utilities - GRP Pipes - 700 mm Depth: 2.51m - 3.50m; Stormwater Utilities - GRP Pipes - 700 mm Depth exceeds 3.50m; Stormwater Utilities - GRP Pipes - 800 mm Depth: 1.51m - 2.50m; Stormwater Utilities - GRP Pipes - 800 mm Depth: 2.51m - 3.50m; Stormwater Utilities - GRP Pipes - 800 mm Depth exceeds 3.50m; Loader [48 h]; Truck [48 h]; Driver [50 h]; Eq. Operator [50 h]; Stormwater Utilities - GRP Pipes - 500 mm Depth: 1.51m - 2.50m [1.39]; Stormwater Utilities - GRP Pipes - 500 mm Depth: 2.51m - 3.50m [0.58] | 1,367.5 | 1,367.5 | 1 | L07 | A14860 |
| CON-LEG101-LR-3860 |  | Installation of Pipe for Stormwater Utilities Network [Local – 07 ] | 2d | 2026-02-22 A | 2026-02-23 A | CON-LEG101-PR-2110, CON-LEG101-LR-3760, CON-LEG101-PR-1780 | 100% | 2026-05-19 | 2026-05-21 | Stormwater Utilities - GRP Pipes - 400 mm Diameter Depth: 0.00 m - 1.50 m.; Stormwater Utilities - GRP Pipes - 400 mm Depth: 1.51m - 2.50m; Stormwater Utilities - GRP Pipes - 400 mm Depth exceeds 2.50m; Stormwater Utilities - GRP Pipes - 500 mm Depth: 0.00 m - 1.50 m.; Stormwater Utilities - GRP Pipes - 500 mm Depth: 3.51m - 4.50m; Stormwater Utilities - GRP Pipes - 500 mm Depth exceeds 4.50m; Stormwater Utilities - GRP Pipes - 600 mm Depth: 1.51m - 2.50m; Stormwater Utilities - GRP Pipes - 600 mm Depth: 2.51m - 3.50m; Stormwater Utilities - GRP Pipes - 600 mm Depth: 3.51m - 4.50m; Stormwater Utilities - GRP Pipes - 600 mm Depth exceeds 4.50m; Stormwater Utilities - GRP Pipes - 700 mm Depth: 1.51m - 2.50m; Stormwater Utilities - GRP Pipes - 700 mm Depth: 2.51m - 3.50m; Stormwater Utilities - GRP Pipes - 700 mm Depth exceeds 3.50m; Stormwater Utilities - GRP Pipes - 800 mm Depth: 1.51m - 2.50m; Stormwater Utilities - GRP Pipes - 800 mm Depth: 2.51m - 3.50m; Stormwater Utilities - GRP Pipes - 800 mm Depth exceeds 3.50m; Excavator [48 h]; Crane [48 h]; Labor [150 h]; Skilled Labor [100 h]; Eq. Operator [100 h]; Plumber [50 h]; Pipe Fitter [50 h]; Stormwater Utilities - GRP Pipes - 500 mm Depth: 1.51m - 2.50m [12.46]; Stormwater Utilities - GRP Pipes - 500 mm Depth: 2.51m - 3.50m [5.2] | 12,259 | 12,259 | 1 | L07 | A14970 |
| CON-LEG101-LR-4060 |  | Granular Surround for Stormwater Utilities Network [Local – 07 ] | 2d | 2026-02-24 A | 2026-02-24 A | CON-LEG101-LR-3960, CON-LEG101-EN-3450 | 100% | 2026-05-24 | 2026-05-26 | Stormwater Utilities - GRP Pipes - 400 mm Diameter Depth: 0.00 m - 1.50 m.; Stormwater Utilities - GRP Pipes - 400 mm Depth: 1.51m - 2.50m; Stormwater Utilities - GRP Pipes - 400 mm Depth exceeds 2.50m; Stormwater Utilities - GRP Pipes - 500 mm Depth: 0.00 m - 1.50 m.; Stormwater Utilities - GRP Pipes - 500 mm Depth: 3.51m - 4.50m; Stormwater Utilities - GRP Pipes - 500 mm Depth exceeds 4.50m; Stormwater Utilities - GRP Pipes - 600 mm Depth: 1.51m - 2.50m; Stormwater Utilities - GRP Pipes - 600 mm Depth: 2.51m - 3.50m; Stormwater Utilities - GRP Pipes - 600 mm Depth: 3.51m - 4.50m; Stormwater Utilities - GRP Pipes - 600 mm Depth exceeds 4.50m; Stormwater Utilities - GRP Pipes - 700 mm Depth: 1.51m - 2.50m; Stormwater Utilities - GRP Pipes - 700 mm Depth: 2.51m - 3.50m; Stormwater Utilities - GRP Pipes - 700 mm Depth exceeds 3.50m; Stormwater Utilities - GRP Pipes - 800 mm Depth: 1.51m - 2.50m; Stormwater Utilities - GRP Pipes - 800 mm Depth: 2.51m - 3.50m; Stormwater Utilities - GRP Pipes - 800 mm Depth exceeds 3.50m; Loader [48 h]; Truck [48 h]; Driver [50 h]; Eq. Operator [50 h]; Stormwater Utilities - GRP Pipes - 500 mm Depth: 1.51m - 2.50m [1.39]; Stormwater Utilities - GRP Pipes - 500 mm Depth: 2.51m - 3.50m [0.58] | 1,367.5 | 1,367.5 | 1 | L07 | A15190 |
| CON-LEG101-LR-3960 |  | Testing for Stormwater Utilities Network [Local – 07 ] | 2d | 2026-03-15 A | 2026-03-16 A | CON-LEG101-LR-3860 | 100% | 2026-05-24 | 2026-05-26 | Stormwater Utilities - GRP Pipes - 400 mm Diameter Depth: 0.00 m - 1.50 m.; Stormwater Utilities - GRP Pipes - 400 mm Depth: 1.51m - 2.50m; Stormwater Utilities - GRP Pipes - 400 mm Depth exceeds 2.50m; Stormwater Utilities - GRP Pipes - 500 mm Depth: 0.00 m - 1.50 m.; Stormwater Utilities - GRP Pipes - 500 mm Depth: 3.51m - 4.50m; Stormwater Utilities - GRP Pipes - 500 mm Depth exceeds 4.50m; Stormwater Utilities - GRP Pipes - 600 mm Depth: 1.51m - 2.50m; Stormwater Utilities - GRP Pipes - 600 mm Depth: 2.51m - 3.50m; Stormwater Utilities - GRP Pipes - 600 mm Depth: 3.51m - 4.50m; Stormwater Utilities - GRP Pipes - 600 mm Depth exceeds 4.50m; Stormwater Utilities - GRP Pipes - 700 mm Depth: 1.51m - 2.50m; Stormwater Utilities - GRP Pipes - 700 mm Depth: 2.51m - 3.50m; Stormwater Utilities - GRP Pipes - 700 mm Depth exceeds 3.50m; Stormwater Utilities - GRP Pipes - 800 mm Depth: 1.51m - 2.50m; Stormwater Utilities - GRP Pipes - 800 mm Depth: 2.51m - 3.50m; Stormwater Utilities - GRP Pipes - 800 mm Depth exceeds 3.50m; Labor [200 h]; Skilled Labor [100 h]; Pipe Fitter [100 h]; Stormwater Utilities - GRP Pipes - 500 mm Depth: 1.51m - 2.50m [2.77]; Stormwater Utilities - GRP Pipes - 500 mm Depth: 2.51m - 3.50m [1.16] | 2,728.5 | 2,728.5 | 1 | L07 | A15080 |
| CON-LEG101-LR-4180 |  | Installation of Micron Marker Magnetic Tape [Local – 07 ] | 3d | 2026-04-05 A | 2026-04-06 A | CON-LEG101-LR-4060 | 100% | 2026-06-16 | 2026-06-18 | Stormwater Utilities - GRP Pipes - 400 mm Diameter Depth: 0.00 m - 1.50 m.; Stormwater Utilities - GRP Pipes - 400 mm Depth: 1.51m - 2.50m; Stormwater Utilities - GRP Pipes - 400 mm Depth exceeds 2.50m; Stormwater Utilities - GRP Pipes - 500 mm Depth: 0.00 m - 1.50 m.; Stormwater Utilities - GRP Pipes - 500 mm Depth: 3.51m - 4.50m; Stormwater Utilities - GRP Pipes - 500 mm Depth exceeds 4.50m; Stormwater Utilities - GRP Pipes - 600 mm Depth: 1.51m - 2.50m; Stormwater Utilities - GRP Pipes - 600 mm Depth: 2.51m - 3.50m; Stormwater Utilities - GRP Pipes - 600 mm Depth: 3.51m - 4.50m; Stormwater Utilities - GRP Pipes - 600 mm Depth exceeds 4.50m; Stormwater Utilities - GRP Pipes - 700 mm Depth: 1.51m - 2.50m; Stormwater Utilities - GRP Pipes - 700 mm Depth: 2.51m - 3.50m; Stormwater Utilities - GRP Pipes - 700 mm Depth exceeds 3.50m; Stormwater Utilities - GRP Pipes - 800 mm Depth: 1.51m - 2.50m; Stormwater Utilities - GRP Pipes - 800 mm Depth: 2.51m - 3.50m; Stormwater Utilities - GRP Pipes - 800 mm Depth exceeds 3.50m; Labor [100 h]; Stormwater Utilities - GRP Pipes - 500 mm Depth: 1.51m - 2.50m [1.39]; Stormwater Utilities - GRP Pipes - 500 mm Depth: 2.51m - 3.50m [0.58] | 1,367.5 | 1,367.5 | 1 | L07 | A15300 |
| CON-LEG101-LR-4290 |  | Backfilling to Subgrade Elevation [Local – 07 ] | 2d | 2026-04-08 A | 2026-04-09 A | CON-LEG101-LR-4180, CON-LEG101-EN-3440 | 100% | 2026-06-20 | 2026-06-21 | Stormwater Utilities - GRP Pipes - 400 mm Diameter Depth: 0.00 m - 1.50 m.; Stormwater Utilities - GRP Pipes - 400 mm Depth: 1.51m - 2.50m; Stormwater Utilities - GRP Pipes - 400 mm Depth exceeds 2.50m; Stormwater Utilities - GRP Pipes - 500 mm Depth: 0.00 m - 1.50 m.; Stormwater Utilities - GRP Pipes - 500 mm Depth: 3.51m - 4.50m; Stormwater Utilities - GRP Pipes - 500 mm Depth exceeds 4.50m; Stormwater Utilities - GRP Pipes - 600 mm Depth: 1.51m - 2.50m; Stormwater Utilities - GRP Pipes - 600 mm Depth: 2.51m - 3.50m; Stormwater Utilities - GRP Pipes - 600 mm Depth: 3.51m - 4.50m; Stormwater Utilities - GRP Pipes - 600 mm Depth exceeds 4.50m; Stormwater Utilities - GRP Pipes - 700 mm Depth: 1.51m - 2.50m; Stormwater Utilities - GRP Pipes - 700 mm Depth: 2.51m - 3.50m; Stormwater Utilities - GRP Pipes - 700 mm Depth exceeds 3.50m; Stormwater Utilities - GRP Pipes - 800 mm Depth: 1.51m - 2.50m; Stormwater Utilities - GRP Pipes - 800 mm Depth: 2.51m - 3.50m; Stormwater Utilities - GRP Pipes - 800 mm Depth exceeds 3.50m; Excavator [34 h]; Water Tanker [48 h]; Road Roller [48 h]; Bucket [48 h]; Compactor [48 h]; Labor [100 h]; Driver [50 h]; Eq. Operator [200 h]; Stormwater Utilities - GRP Pipes - 500 mm Depth: 1.51m - 2.50m [2.77]; Stormwater Utilities - GRP Pipes - 500 mm Depth: 2.51m - 3.50m [1.16] | 2,728.5 | 2,728.5 | 1 | L07 | A15410 |

| ID | WBS | Activity | Duration | Start | Finish | Predecessors | Complete | Planned start | Planned finish | Resources | Cost | Actual cost | % A | JEDDAH 1 - Area Name | Mapping Sheet Activity ID |
| --- | --- | --- | --- | --- | --- | --- | --- | --- | --- | --- | --- | --- | --- | --- | --- |
|  | 1 | **Manhole** |  | 2026-02-18 | 2026-08-23 |  |  |  |  |  |  |  |  |  |  |
| CON-LEG101-LR-11630 |  | Excavation of Inlet Manholes [Local – 07 ] | 3d | 2026-02-18 A | 2026-02-21 A | CON-LEG101-LR-3660, CON-LEG101-LR-4290 | 100% | 2026-06-06 | 2026-06-09 | Stormwater Utilities - (ring 1200 mm internal dia.) MH depth 1.51 - 2.50m [0.1]; Stormwater Utilities - (ring 1200 mm internal dia.) MH depth 2.51 - 3.50m; Stormwater Utilities - (ring 1200 mm internal dia.) MH depth 3.51 - 4.50m; Stormwater Utilities - (ring 1200 mm internal dia.) MH depth exceeds 4.50m; Stormwater Utilities - (ring 1500 mm internal dia.) MH depth exceeds 3.50m; Stormwater Utilities - (ring 1500 mm internal dia.) MH depth 1.51 - 2.50m; Stormwater Utilities - (ring 1500 mm internal dia.) MH depth 2.51 - 3.50m | 1,650 | 1,650 | 1 | L07 |  |
| CON-LEG101-LR-11640 |  | PC of Inlet Manholes [Local – 07 ] | 2d | 2026-02-22 A | 2026-02-22 A | CON-LEG101-LR-11630 | 100% | 2026-06-09 | 2026-06-11 | Stormwater Utilities - (ring 1200 mm internal dia.) MH depth 1.51 - 2.50m [0.07]; Stormwater Utilities - (ring 1200 mm internal dia.) MH depth 2.51 - 3.50m; Stormwater Utilities - (ring 1200 mm internal dia.) MH depth 3.51 - 4.50m; Stormwater Utilities - (ring 1200 mm internal dia.) MH depth exceeds 4.50m; Stormwater Utilities - (ring 1500 mm internal dia.) MH depth exceeds 3.50m; Stormwater Utilities - (ring 1500 mm internal dia.) MH depth 1.51 - 2.50m; Stormwater Utilities - (ring 1500 mm internal dia.) MH depth 2.51 - 3.50m | 1,155 | 1,155 | 1 | L07 |  |
| CON-LEG101-LR-4400 |  | Installation of Inlet Manholes [Local – 07 ] | 8d | 2026-03-10 A | 2026-04-25 A | CON-LEG101-LR-11640, CON-LEG101-LR-3860, CON-LEG101-PR-1980 | 100% | 2026-05-24 | 2026-06-07 | Stormwater Utilities - (ring 1200 mm internal dia.) MH depth 2.51 - 3.50m; Stormwater Utilities - (ring 1200 mm internal dia.) MH depth 3.51 - 4.50m; Stormwater Utilities - (ring 1200 mm internal dia.) MH depth exceeds 4.50m; Stormwater Utilities - (ring 1500 mm internal dia.) MH depth exceeds 3.50m; Stormwater Utilities - (ring 1500 mm internal dia.) MH depth 1.51 - 2.50m; Stormwater Utilities - (ring 1500 mm internal dia.) MH depth 2.51 - 3.50m; Stormwater Utilities - (ring 1200 mm internal dia.) MH depth 1.51 - 2.50m [0.3]; Excavator [32 h]; Bucket [48 h]; Compactor [48 h]; Labor [100 h]; Eq. Operator [150 h]; Pipe Fitter [100 h] | 4,950 | 4,950 | 1 | L07 | A15630 |
| CON-LEG101-LR-11650 |  | Backfilling of Inlet Manholes [Local – 07 ] | 8d | 2026-04-26 A | 2026-04-29 A | CON-LEG101-LR-4400 | 100% | 2026-06-18 | 2026-06-28 | Stormwater Utilities - (ring 1200 mm internal dia.) MH depth 1.51 - 2.50m [0.13]; Stormwater Utilities - (ring 1200 mm internal dia.) MH depth 2.51 - 3.50m; Stormwater Utilities - (ring 1200 mm internal dia.) MH depth 3.51 - 4.50m; Stormwater Utilities - (ring 1200 mm internal dia.) MH depth exceeds 4.50m; Stormwater Utilities - (ring 1500 mm internal dia.) MH depth exceeds 3.50m; Stormwater Utilities - (ring 1500 mm internal dia.) MH depth 1.51 - 2.50m; Stormwater Utilities - (ring 1500 mm internal dia.) MH depth 2.51 - 3.50m | 2,145 | 2,145 | 1 | L07 |  |
| CON-LEG101-LR-11660 |  | Finishing and Testing of Inlet Manholes [Local – 07 ] | 8d | 2026-08-05 A | 2026-08-23 A | CON-LEG101-LR-11650, CON-LEG101-LR-4400, CON-LEG101-LR-11570 | 100% | 2026-10-26 | 2026-11-04 | Stormwater Utilities - (ring 1200 mm internal dia.) MH depth 1.51 - 2.50m [0.07]; Stormwater Utilities - (ring 1200 mm internal dia.) MH depth 2.51 - 3.50m; Stormwater Utilities - (ring 1200 mm internal dia.) MH depth 3.51 - 4.50m; Stormwater Utilities - (ring 1200 mm internal dia.) MH depth exceeds 4.50m; Stormwater Utilities - (ring 1500 mm internal dia.) MH depth exceeds 3.50m; Stormwater Utilities - (ring 1500 mm internal dia.) MH depth 1.51 - 2.50m; Stormwater Utilities - (ring 1500 mm internal dia.) MH depth 2.51 - 3.50m | 1,155 | 1,155 | 1 | L07 |  |
|  | 3 | **Concrete Chambers/Outfalls** |  | 2026-04-25 | 2026-08-23 |  |  |  |  |  |  |  |  |  |  |
| CON-LEG101-LR-11670 |  | Excavation of Concrete chambers [Local – 07 ] | 3d | 2026-04-25 A | 2026-04-26 A | CON-LEG101-LR-4400 | 100% | 2026-06-18 | 2026-06-22 | Single Catch basin as per drawings [0.3]; Double Catch basin as per drawings [0.06]; Curb inlet catch basin [0.18] | 5,040 | 5,040 | 1 | L07 |  |
| CON-LEG101-LR-11680 |  | PC of Concrete chambers [Local – 07 ] | 2d | 2026-04-27 A | 2026-04-28 A | CON-LEG101-LR-11670 | 100% | 2026-06-22 | 2026-06-24 | Single Catch basin as per drawings [0.2]; Double Catch basin as per drawings [0.04]; Curb inlet catch basin [0.12] | 3,360 | 3,360 | 1 | L07 |  |
| CON-LEG101-LR-11690 |  | Installation UPVC Pipes to Concrete chambers [Local – 07 ] | 4d | 2026-04-29 A | 2026-04-30 A | CON-LEG101-LR-11670, CON-LEG101-LR-4500 | 100% | 2026-07-01 | 2026-07-06 | Stormwater Utilities - PVC Pipes - 300 mm Diameter Depth: 0.00 m - 1.50 m. [14]; Stormwater Utilities - PVC Pipes - 300 mm Diameter Depth: 1.51m - 2.50m [20.51]; Stormwater Utilities - PVC Pipes - 500 mm Depth: 1.51m - 2.50m [6.34]; Stormwater Utilities - PVC Pipes - 300 mm Diameter Depth exceeds 2.50m; Stormwater Utilities - PVC Pipes - 400 mm Diameter Depth: 0.00 m - 1.50 m.; Stormwater Utilities - PVC Pipes - 500 mm Depth: 0.00 m - 1.50 m.; Stormwater Utilities - PVC Pipes - 400 mm Diameter Depth: 1.51m - 2.50m; Stormwater Utilities - PVC Pipes - 400 mm Diameter Depth exceeds 2.50m; Stormwater Utilities - PVC Pipes - 500 mm Depth exceeds 2.50m | 19,394.3 | 19,394.3 | 1 | L07 |  |
| CON-LEG101-LR-4500 |  | Installation of Concrete chambers [Local – 07 ] | 6d | 2026-04-29 A | 2026-04-30 A | CON-LEG101-LR-11680, CON-LEG101-LR-3860, CON-LEG101-PR-1990 | 100% | 2026-06-24 | 2026-07-01 | Single Catch basin as per drawings [0.9]; Double Catch basin as per drawings [0.18]; Curb inlet catch basin [0.55]; Excavator [44 h]; Labor [100 h]; Skilled Labor [50 h]; Eq. Operator [50 h]; Pipe Fitter [50 h] | 15,260 | 15,260 | 1 | L07 | A15780 |
| CON-LEG101-LR-11700 |  | Backfilling to Concrete chambers [Local – 07 ] | 3d | 2026-05-02 A | 2026-05-04 A | CON-LEG101-LR-11690, CON-LEG101-LR-4500 | 100% | 2026-06-22 | 2026-06-24 | Single Catch basin as per drawings [0.4]; Double Catch basin as per drawings [0.08]; Curb inlet catch basin [0.25] | 6,860 | 6,860 | 1 | L07 |  |
| CON-LEG101-LR-11710 |  | FInishing and Testing of Concrete chambers [Local – 07 ] | 6d | 2026-08-06 A | 2026-08-23 A | CON-LEG101-LR-11690, CON-LEG101-LR-11700, CON-LEG101-LR-4500, CON-LEG101-LR-11620 | 100% | 2026-11-09 | 2026-11-16 | Single Catch basin as per drawings [0.2]; Double Catch basin as per drawings [0.04]; Curb inlet catch basin [0.12] | 3,360 | 3,360 | 1 | L07 |  |
|  | 4 | **Sanitary Sewerage** |  | 2026-05-02 | 2026-08-23 |  |  |  |  |  |  |  |  |  |  |
|  | 2 | **Pipe Work** |  | 2026-05-02 | 2026-06-08 |  |  |  |  |  |  |  |  |  |  |
| CON-LEG101-LR-2850 |  | Excavation for Sanitary Sewerage Network [Local – 07 ] | 3d | 2026-05-02 A | 2026-05-03 A | CON-LEG101-LR-3660, CON-LEG101-EN-1750, CON-LEG101-EN-1760, CON-LEG101-EN-1770, CON-LEG101-EN-3440, CON-LEG101-LR-11640 | 100% | 2026-06-22 | 2026-06-24 | Sanitary Sewerage 450mm Depth: 3.51m - 4.50m; Sanitary Sewerage 450mm Depth exceeds 4.50m; Sanitary Sewerage 150mm Diameter Depth: 0.00 m - 1.50 m.; Sanitary Sewerage 150mm Diameter Depth: 1.51m - 2.50m; Sanitary Sewerage 150mm Diameter Depth exceeds 2.50m; Sanitary Sewerage 200mm Depth exceeds 3.50m; Sanitary Sewerage 300mm Depth: 0.00 m - 1.50 m.; Sanitary Sewerage 300mm Depth: 1.51m - 2.50m; Sanitary Sewerage 300mm Depth: 2.51m - 3.50m; Sanitary Sewerage 300mm Depth exceeds 3.50m; Sanitary Sewerage 350mm Depth: 0.00 m - 1.50 m.; Sanitary Sewerage 350mm Depth: 1.51m - 2.50m; Sanitary Sewerage 350mm Depth: 2.51m - 3.50m; Sanitary Sewerage 350mm Depth exceeds 3.50m; Sanitary Sewerage 450mm Depth: 0.00 m - 1.50 m.; Sanitary Sewerage 450mm Depth: 1.51m - 2.50m; Sanitary Sewerage 450mm Depth: 2.51m - 3.50m; Excavator [48 h]; Water Tanker [48 h]; Truck [96 h]; Crane [48 h]; Labor [200 h]; Driver [150 h]; Eq. Operator [100 h]; Sanitary Sewerage 200mm Depth: 0.00 m - 1.50 m. [8.65]; Sanitary Sewerage 200mm Depth: 1.51m - 2.50m [14.65]; Sanitary Sewerage 200mm Depth: 2.51m - 3.50m [7.29] | 11,176 | 11,176 | 1 | L07 | A13280 |
| CON-LEG101-LR-2940 |  | Granular bedding for Sanitary Sewerage Network [Local – 07 ] | 2d | 2026-05-04 A | 2026-05-05 A | CON-LEG101-LR-2850 | 100% | 2026-06-25 | 2026-06-27 | Sanitary Sewerage 450mm Depth: 3.51m - 4.50m; Sanitary Sewerage 450mm Depth exceeds 4.50m; Sanitary Sewerage 150mm Diameter Depth: 0.00 m - 1.50 m.; Sanitary Sewerage 150mm Diameter Depth: 1.51m - 2.50m; Sanitary Sewerage 150mm Diameter Depth exceeds 2.50m; Sanitary Sewerage 200mm Depth exceeds 3.50m; Sanitary Sewerage 300mm Depth: 0.00 m - 1.50 m.; Sanitary Sewerage 300mm Depth: 1.51m - 2.50m; Sanitary Sewerage 300mm Depth: 2.51m - 3.50m; Sanitary Sewerage 300mm Depth exceeds 3.50m; Sanitary Sewerage 350mm Depth: 0.00 m - 1.50 m.; Sanitary Sewerage 350mm Depth: 1.51m - 2.50m; Sanitary Sewerage 350mm Depth: 2.51m - 3.50m; Sanitary Sewerage 350mm Depth exceeds 3.50m; Sanitary Sewerage 450mm Depth: 0.00 m - 1.50 m.; Sanitary Sewerage 450mm Depth: 1.51m - 2.50m; Sanitary Sewerage 450mm Depth: 2.51m - 3.50m; Loader [48 h]; Truck [48 h]; Driver [50 h]; Eq. Operator [50 h]; Sanitary Sewerage 200mm Depth: 0.00 m - 1.50 m. [2.16]; Sanitary Sewerage 200mm Depth: 1.51m - 2.50m [3.66]; Sanitary Sewerage 200mm Depth: 2.51m - 3.50m [1.82] | 2,791.2 | 2,791.2 | 1 | L07 | A13380 |
| CON-LEG101-LR-3030 |  | Installation of Pipe for Sanitary Sewerage Network [Local – 07 ] | 4d | 2026-05-06 A | 2026-05-09 A | CON-LEG101-PR-2560, CON-LEG101-LR-2940, CON-LEG101-PR-1720 | 100% | 2026-06-28 | 2026-07-01 | Sanitary Sewerage 450mm Depth: 3.51m - 4.50m; Sanitary Sewerage 450mm Depth exceeds 4.50m; Sanitary Sewerage 150mm Diameter Depth: 0.00 m - 1.50 m.; Sanitary Sewerage 150mm Diameter Depth: 1.51m - 2.50m; Sanitary Sewerage 150mm Diameter Depth exceeds 2.50m; Sanitary Sewerage 200mm Depth exceeds 3.50m; Sanitary Sewerage 300mm Depth: 0.00 m - 1.50 m.; Sanitary Sewerage 300mm Depth: 1.51m - 2.50m; Sanitary Sewerage 300mm Depth: 2.51m - 3.50m; Sanitary Sewerage 300mm Depth exceeds 3.50m; Sanitary Sewerage 350mm Depth: 0.00 m - 1.50 m.; Sanitary Sewerage 350mm Depth: 1.51m - 2.50m; Sanitary Sewerage 350mm Depth: 2.51m - 3.50m; Sanitary Sewerage 350mm Depth exceeds 3.50m; Sanitary Sewerage 450mm Depth: 0.00 m - 1.50 m.; Sanitary Sewerage 450mm Depth: 1.51m - 2.50m; Sanitary Sewerage 450mm Depth: 2.51m - 3.50m; Excavator [48 h]; Crane [48 h]; Labor [150 h]; Skilled Labor [100 h]; Eq. Operator [100 h]; Plumber [50 h]; Pipe Fitter [50 h]; Sanitary Sewerage 200mm Depth: 0.00 m - 1.50 m. [19.46]; Sanitary Sewerage 200mm Depth: 1.51m - 2.50m [32.96]; Sanitary Sewerage 200mm Depth: 2.51m - 3.50m [16.4] | 25,143.2 | 25,143.2 | 1 | L07 | A13480 |
| CON-LEG101-LR-3120 |  | Testing for Sanitary Sewerage Network [Local – 07 ] | 2d | 2026-05-23 A | 2026-05-24 A | CON-LEG101-LR-3030 | 100% | 2026-06-30 | 2026-07-01 | Sanitary Sewerage 450mm Depth: 3.51m - 4.50m; Sanitary Sewerage 450mm Depth exceeds 4.50m; Sanitary Sewerage 150mm Diameter Depth: 0.00 m - 1.50 m.; Sanitary Sewerage 150mm Diameter Depth: 1.51m - 2.50m; Sanitary Sewerage 150mm Diameter Depth exceeds 2.50m; Sanitary Sewerage 200mm Depth exceeds 3.50m; Sanitary Sewerage 300mm Depth: 0.00 m - 1.50 m.; Sanitary Sewerage 300mm Depth: 1.51m - 2.50m; Sanitary Sewerage 300mm Depth: 2.51m - 3.50m; Sanitary Sewerage 300mm Depth exceeds 3.50m; Sanitary Sewerage 350mm Depth: 0.00 m - 1.50 m.; Sanitary Sewerage 350mm Depth: 1.51m - 2.50m; Sanitary Sewerage 350mm Depth: 2.51m - 3.50m; Sanitary Sewerage 350mm Depth exceeds 3.50m; Sanitary Sewerage 450mm Depth: 0.00 m - 1.50 m.; Sanitary Sewerage 450mm Depth: 1.51m - 2.50m; Sanitary Sewerage 450mm Depth: 2.51m - 3.50m; Labor [200 h]; Skilled Labor [100 h]; Pipe Fitter [100 h]; Sanitary Sewerage 200mm Depth: 0.00 m - 1.50 m. [4.33]; Sanitary Sewerage 200mm Depth: 1.51m - 2.50m [7.32]; Sanitary Sewerage 200mm Depth: 2.51m - 3.50m [3.64] | 5,585.6 | 5,585.6 | 1 | L07 | A13580 |
| CON-LEG101-LR-3220 |  | Concrete encasement, pipe dia 200 and 350 mm [Local – 07 ] | 2d | 2026-06-01 A | 2026-06-02 A | CON-LEG101-LR-3120, CON-LEG101-EN-3450, CON-LEG101-PR-1430 | 100% | 2026-07-11 | 2026-07-12 | Sanitary Sewerage Concrete encasement pipe dia 350 mm; Sanitary Sewerage - Concrete encasement pipe dia 200 mm [33.63]; Labor [200 h]; Carpenter [50 h]; Mason [100 h] | 7,398.6 | 7,398.6 | 1 | L07 | A13720 |
| CON-LEG101-LR-3310 |  | Granular Surround for Sanitary Sewerage Network [Local – 07 ] | 2d | 2026-06-03 A | 2026-06-03 A | CON-LEG101-LR-3220, CON-LEG101-EN-3450 | 100% | 2026-07-13 | 2026-07-14 | Sanitary Sewerage 450mm Depth: 3.51m - 4.50m; Sanitary Sewerage 450mm Depth exceeds 4.50m; Sanitary Sewerage 150mm Diameter Depth: 0.00 m - 1.50 m.; Sanitary Sewerage 150mm Diameter Depth: 1.51m - 2.50m; Sanitary Sewerage 150mm Diameter Depth exceeds 2.50m; Sanitary Sewerage 200mm Depth exceeds 3.50m; Sanitary Sewerage 300mm Depth: 0.00 m - 1.50 m.; Sanitary Sewerage 300mm Depth: 1.51m - 2.50m; Sanitary Sewerage 300mm Depth: 2.51m - 3.50m; Sanitary Sewerage 300mm Depth exceeds 3.50m; Sanitary Sewerage 350mm Depth: 0.00 m - 1.50 m.; Sanitary Sewerage 350mm Depth: 1.51m - 2.50m; Sanitary Sewerage 350mm Depth: 2.51m - 3.50m; Sanitary Sewerage 350mm Depth exceeds 3.50m; Sanitary Sewerage 450mm Depth: 0.00 m - 1.50 m.; Sanitary Sewerage 450mm Depth: 1.51m - 2.50m; Sanitary Sewerage 450mm Depth: 2.51m - 3.50m; Loader [48 h]; Truck [48 h]; Driver [50 h]; Eq. Operator [50 h]; Sanitary Sewerage 200mm Depth: 0.00 m - 1.50 m. [2.16]; Sanitary Sewerage 200mm Depth: 1.51m - 2.50m [3.66]; Sanitary Sewerage 200mm Depth: 2.51m - 3.50m [1.82] | 2,791.2 | 2,791.2 | 1 | L07 | A13810 |
| CON-LEG101-LR-3400 |  | Installation of Micron Marker Magnetic Tape [Local – 07 ] | 1d | 2026-06-04 A | 2026-06-04 A | CON-LEG101-LR-3310 | 100% | 2026-07-15 | 2026-07-15 | Sanitary Sewerage 450mm Depth: 3.51m - 4.50m; Sanitary Sewerage 450mm Depth exceeds 4.50m; Sanitary Sewerage 150mm Diameter Depth: 0.00 m - 1.50 m.; Sanitary Sewerage 150mm Diameter Depth: 1.51m - 2.50m; Sanitary Sewerage 150mm Diameter Depth exceeds 2.50m; Sanitary Sewerage 200mm Depth exceeds 3.50m; Sanitary Sewerage 300mm Depth: 0.00 m - 1.50 m.; Sanitary Sewerage 300mm Depth: 1.51m - 2.50m; Sanitary Sewerage 300mm Depth: 2.51m - 3.50m; Sanitary Sewerage 300mm Depth exceeds 3.50m; Sanitary Sewerage 350mm Depth: 0.00 m - 1.50 m.; Sanitary Sewerage 350mm Depth: 1.51m - 2.50m; Sanitary Sewerage 350mm Depth: 2.51m - 3.50m; Sanitary Sewerage 350mm Depth exceeds 3.50m; Sanitary Sewerage 450mm Depth: 0.00 m - 1.50 m.; Sanitary Sewerage 450mm Depth: 1.51m - 2.50m; Sanitary Sewerage 450mm Depth: 2.51m - 3.50m; Labor [100 h]; Sanitary Sewerage 200mm Depth: 0.00 m - 1.50 m. [2.16]; Sanitary Sewerage 200mm Depth: 1.51m - 2.50m [3.66]; Sanitary Sewerage 200mm Depth: 2.51m - 3.50m [1.82] | 2,791.2 | 2,791.2 | 1 | L07 | A13910 |
| CON-LEG101-LR-3490 |  | Backfilling to Subgrade Elevation [Local – 07 ] | 2d | 2026-06-06 A | 2026-06-08 A | CON-LEG101-LR-3400, CON-LEG101-EN-3440 | 100% | 2026-07-16 | 2026-07-18 | Sanitary Sewerage 450mm Depth: 3.51m - 4.50m; Sanitary Sewerage 450mm Depth exceeds 4.50m; Sanitary Sewerage 150mm Diameter Depth: 0.00 m - 1.50 m.; Sanitary Sewerage 150mm Diameter Depth: 1.51m - 2.50m; Sanitary Sewerage 150mm Diameter Depth exceeds 2.50m; Sanitary Sewerage 200mm Depth exceeds 3.50m; Sanitary Sewerage 300mm Depth: 0.00 m - 1.50 m.; Sanitary Sewerage 300mm Depth: 1.51m - 2.50m; Sanitary Sewerage 300mm Depth: 2.51m - 3.50m; Sanitary Sewerage 300mm Depth exceeds 3.50m; Sanitary Sewerage 350mm Depth: 0.00 m - 1.50 m.; Sanitary Sewerage 350mm Depth: 1.51m - 2.50m; Sanitary Sewerage 350mm Depth: 2.51m - 3.50m; Sanitary Sewerage 350mm Depth exceeds 3.50m; Sanitary Sewerage 450mm Depth: 0.00 m - 1.50 m.; Sanitary Sewerage 450mm Depth: 1.51m - 2.50m; Sanitary Sewerage 450mm Depth: 2.51m - 3.50m; Excavator [20 h]; Water Tanker [40 h]; Road Roller [48 h]; Bucket [48 h]; Compactor [48 h]; Labor [100 h]; Driver [50 h]; Eq. Operator [200 h]; Sanitary Sewerage 200mm Depth: 0.00 m - 1.50 m. [4.33]; Sanitary Sewerage 200mm Depth: 1.51m - 2.50m [7.32]; Sanitary Sewerage 200mm Depth: 2.51m - 3.50m [3.64] | 5,585.6 | 5,585.6 | 1 | L07 | A14010 |
|  | 1 | **Manhole** |  | 2026-05-02 | 2026-08-23 |  |  |  |  |  |  |  |  |  |  |
| CON-LEG101-LR-3570 |  | Installation of Fiberglass Manholes [Local – 07 ] | 12d | 2026-05-02 A | 2026-08-23 A | CON-LEG101-PR-2570, CON-LEG101-LR-3030, CON-LEG101-PR-1750 | 100% | 2026-07-02 | 2026-07-15 | Sanitary Sewerage MH depth 0.00 m - 1.50 m.; Sanitary Sewerage MH depth 1.51 - 2.50 m; Sanitary Sewerage MH depth 1.51 - 2.50 m with back drop; Sanitary Sewerage MH depth 2.51 - 3.50 m with back drop; Sanitary Sewerage MH depth 3.51 - 4.50 m; Sanitary Sewerage MH depth exceeds 3.50 m with back drop; Sanitary Sewerage MH depth exceeds 4.50 m; Sanitary Sewerage MH depth 2.51 - 3.50 m [1.34]; Excavator [33 h]; Bucket [48 h]; Compactor [48 h]; Labor [100 h]; Eq. Operator [150 h]; Pipe Fitter [100 h] | 24,120 | 24,120 | 1 | L07 | A14220 |

| ID | WBS | Activity | Duration | Start | Finish | Predecessors | Complete | Remaining | Planned start | Planned finish | Total float | Free float | Resources | Cost | Actual cost | Mapping Sheet Activity ID | % A | JEDDAH 1 - Area Name |
| --- | --- | --- | --- | --- | --- | --- | --- | --- | --- | --- | --- | --- | --- | --- | --- | --- | --- | --- |
|  | 8 | **Local – 08** |  | 2026-01-17 | 2027-02-01 |  |  |  |  |  |  |  |  |  |  |  |  |  |
|  | 1 | **Stormwater Utilities** |  | 2026-01-17 | 2027-02-01 |  |  |  |  |  |  |  |  |  |  |  |  |  |
|  | 2 | **Pipe Work** |  | 2026-01-17 | 2026-03-07 |  |  |  |  |  |  |  |  |  |  |  |  |  |
| CON-LEG101-LR-3670 |  | Excavation for Stormwater Utilities Network [Local – 08 ] | 10d | 2026-01-17 A | 2026-01-21 A | CON-LEG101-LR-3610, CON-LEG101-SD-1000, CON-LEG101-LR-2180, CON-LEG101-EN-1780, CON-LEG101-EN-1790, CON-LEG101-EN-1800, CON-LEG101-EN-3440 | 100% |  | 2026-04-02 | 2026-04-14 |  |  | Stormwater Utilities - GRP Pipes - 400 mm Diameter Depth: 0.00 m - 1.50 m.; Stormwater Utilities - GRP Pipes - 400 mm Depth: 1.51m - 2.50m; Stormwater Utilities - GRP Pipes - 400 mm Depth exceeds 2.50m; Stormwater Utilities - GRP Pipes - 500 mm Depth: 0.00 m - 1.50 m.; Stormwater Utilities - GRP Pipes - 500 mm Depth: 3.51m - 4.50m; Stormwater Utilities - GRP Pipes - 500 mm Depth exceeds 4.50m; Stormwater Utilities - GRP Pipes - 600 mm Depth: 1.51m - 2.50m; Stormwater Utilities - GRP Pipes - 600 mm Depth: 2.51m - 3.50m; Stormwater Utilities - GRP Pipes - 600 mm Depth: 3.51m - 4.50m; Stormwater Utilities - GRP Pipes - 600 mm Depth exceeds 4.50m; Stormwater Utilities - GRP Pipes - 700 mm Depth: 1.51m - 2.50m; Stormwater Utilities - GRP Pipes - 700 mm Depth: 2.51m - 3.50m; Stormwater Utilities - GRP Pipes - 700 mm Depth exceeds 3.50m; Stormwater Utilities - GRP Pipes - 800 mm Depth: 1.51m - 2.50m; Stormwater Utilities - GRP Pipes - 800 mm Depth: 2.51m - 3.50m; Stormwater Utilities - GRP Pipes - 800 mm Depth exceeds 3.50m; Excavator [48 h]; Water Tanker [48 h]; Truck [96 h]; Crane [48 h]; Labor [200 h]; Driver [150 h]; Eq. Operator [100 h]; Stormwater Utilities - GRP Pipes - 500 mm Depth: 1.51m - 2.50m [66.45]; Stormwater Utilities - GRP Pipes - 500 mm Depth: 2.51m - 3.50m [27.74] | 65,384.5 | 65,384.5 | A14760 | 1 | L08 |
| CON-LEG101-LR-3770 |  | Granular bedding for Stormwater Utilities Network [Local – 08 ] | 4d | 2026-01-19 A | 2026-01-25 A | CON-LEG101-PR-2110, CON-LEG101-LR-3670 | 100% |  | 2026-06-10 | 2026-06-15 |  |  | Stormwater Utilities - GRP Pipes - 400 mm Diameter Depth: 0.00 m - 1.50 m.; Stormwater Utilities - GRP Pipes - 400 mm Depth: 1.51m - 2.50m; Stormwater Utilities - GRP Pipes - 400 mm Depth exceeds 2.50m; Stormwater Utilities - GRP Pipes - 500 mm Depth: 0.00 m - 1.50 m.; Stormwater Utilities - GRP Pipes - 500 mm Depth: 3.51m - 4.50m; Stormwater Utilities - GRP Pipes - 500 mm Depth exceeds 4.50m; Stormwater Utilities - GRP Pipes - 600 mm Depth: 1.51m - 2.50m; Stormwater Utilities - GRP Pipes - 600 mm Depth: 2.51m - 3.50m; Stormwater Utilities - GRP Pipes - 600 mm Depth: 3.51m - 4.50m; Stormwater Utilities - GRP Pipes - 600 mm Depth exceeds 4.50m; Stormwater Utilities - GRP Pipes - 700 mm Depth: 1.51m - 2.50m; Stormwater Utilities - GRP Pipes - 700 mm Depth: 2.51m - 3.50m; Stormwater Utilities - GRP Pipes - 700 mm Depth exceeds 3.50m; Stormwater Utilities - GRP Pipes - 800 mm Depth: 1.51m - 2.50m; Stormwater Utilities - GRP Pipes - 800 mm Depth: 2.51m - 3.50m; Stormwater Utilities - GRP Pipes - 800 mm Depth exceeds 3.50m; Loader [48 h]; Truck [48 h]; Driver [75 h]; Eq. Operator [75 h]; Stormwater Utilities - GRP Pipes - 500 mm Depth: 1.51m - 2.50m [16.62]; Stormwater Utilities - GRP Pipes - 500 mm Depth: 2.51m - 3.50m [6.93] | 16,347 | 16,347 | A14870 | 1 | L08 |
| CON-LEG101-LR-3870 |  | Installation of Pipe for Stormwater Utilities Network [Local – 08 ] | 10d | 2026-01-20 A | 2026-01-31 A | CON-LEG101-PR-2110, CON-LEG101-LR-3770, CON-LEG101-PR-1780 | 100% |  | 2026-06-15 | 2026-06-27 |  |  | Stormwater Utilities - GRP Pipes - 400 mm Diameter Depth: 0.00 m - 1.50 m.; Stormwater Utilities - GRP Pipes - 400 mm Depth: 1.51m - 2.50m; Stormwater Utilities - GRP Pipes - 400 mm Depth exceeds 2.50m; Stormwater Utilities - GRP Pipes - 500 mm Depth: 0.00 m - 1.50 m.; Stormwater Utilities - GRP Pipes - 500 mm Depth: 3.51m - 4.50m; Stormwater Utilities - GRP Pipes - 500 mm Depth exceeds 4.50m; Stormwater Utilities - GRP Pipes - 600 mm Depth: 1.51m - 2.50m; Stormwater Utilities - GRP Pipes - 600 mm Depth: 2.51m - 3.50m; Stormwater Utilities - GRP Pipes - 600 mm Depth: 3.51m - 4.50m; Stormwater Utilities - GRP Pipes - 600 mm Depth exceeds 4.50m; Stormwater Utilities - GRP Pipes - 700 mm Depth: 1.51m - 2.50m; Stormwater Utilities - GRP Pipes - 700 mm Depth: 2.51m - 3.50m; Stormwater Utilities - GRP Pipes - 700 mm Depth exceeds 3.50m; Stormwater Utilities - GRP Pipes - 800 mm Depth: 1.51m - 2.50m; Stormwater Utilities - GRP Pipes - 800 mm Depth: 2.51m - 3.50m; Stormwater Utilities - GRP Pipes - 800 mm Depth exceeds 3.50m; Excavator [48 h]; Crane [48 h]; Labor [225 h]; Skilled Labor [150 h]; Eq. Operator [150 h]; Plumber [75 h]; Pipe Fitter [75 h]; Stormwater Utilities - GRP Pipes - 500 mm Depth: 1.51m - 2.50m [149.52]; Stormwater Utilities - GRP Pipes - 500 mm Depth: 2.51m - 3.50m [62.41] | 147,116 | 147,116 | A14980 | 1 | L08 |
| CON-LEG101-LR-4080 |  | Granular Surround for Stormwater Utilities Network [Local – 08 ] | 6d | 2026-01-20 A | 2026-02-01 A | CON-LEG101-LR-3970, CON-LEG101-EN-3450 | 100% |  | 2026-07-06 | 2026-07-13 |  |  | Stormwater Utilities - GRP Pipes - 400 mm Diameter Depth: 0.00 m - 1.50 m.; Stormwater Utilities - GRP Pipes - 400 mm Depth: 1.51m - 2.50m; Stormwater Utilities - GRP Pipes - 400 mm Depth exceeds 2.50m; Stormwater Utilities - GRP Pipes - 500 mm Depth: 0.00 m - 1.50 m.; Stormwater Utilities - GRP Pipes - 500 mm Depth: 3.51m - 4.50m; Stormwater Utilities - GRP Pipes - 500 mm Depth exceeds 4.50m; Stormwater Utilities - GRP Pipes - 600 mm Depth: 1.51m - 2.50m; Stormwater Utilities - GRP Pipes - 600 mm Depth: 2.51m - 3.50m; Stormwater Utilities - GRP Pipes - 600 mm Depth: 3.51m - 4.50m; Stormwater Utilities - GRP Pipes - 600 mm Depth exceeds 4.50m; Stormwater Utilities - GRP Pipes - 700 mm Depth: 1.51m - 2.50m; Stormwater Utilities - GRP Pipes - 700 mm Depth: 2.51m - 3.50m; Stormwater Utilities - GRP Pipes - 700 mm Depth exceeds 3.50m; Stormwater Utilities - GRP Pipes - 800 mm Depth: 1.51m - 2.50m; Stormwater Utilities - GRP Pipes - 800 mm Depth: 2.51m - 3.50m; Stormwater Utilities - GRP Pipes - 800 mm Depth exceeds 3.50m; Loader [48 h]; Truck [48 h]; Driver [50 h]; Eq. Operator [50 h]; Stormwater Utilities - GRP Pipes - 500 mm Depth: 1.51m - 2.50m [16.62]; Stormwater Utilities - GRP Pipes - 500 mm Depth: 2.51m - 3.50m [6.93] | 16,347 | 16,347 | A15200 | 1 | L08 |
| CON-LEG101-LR-3970 |  | Testing for Stormwater Utilities Network [Local – 08 ] | 8d | 2026-02-21 A | 2026-02-26 A | CON-LEG101-LR-3870 | 100% |  | 2026-04-27 | 2026-05-06 |  |  | Stormwater Utilities - GRP Pipes - 400 mm Diameter Depth: 0.00 m - 1.50 m.; Stormwater Utilities - GRP Pipes - 400 mm Depth: 1.51m - 2.50m; Stormwater Utilities - GRP Pipes - 400 mm Depth exceeds 2.50m; Stormwater Utilities - GRP Pipes - 500 mm Depth: 0.00 m - 1.50 m.; Stormwater Utilities - GRP Pipes - 500 mm Depth: 3.51m - 4.50m; Stormwater Utilities - GRP Pipes - 500 mm Depth exceeds 4.50m; Stormwater Utilities - GRP Pipes - 600 mm Depth: 1.51m - 2.50m; Stormwater Utilities - GRP Pipes - 600 mm Depth: 2.51m - 3.50m; Stormwater Utilities - GRP Pipes - 600 mm Depth: 3.51m - 4.50m; Stormwater Utilities - GRP Pipes - 600 mm Depth exceeds 4.50m; Stormwater Utilities - GRP Pipes - 700 mm Depth: 1.51m - 2.50m; Stormwater Utilities - GRP Pipes - 700 mm Depth: 2.51m - 3.50m; Stormwater Utilities - GRP Pipes - 700 mm Depth exceeds 3.50m; Stormwater Utilities - GRP Pipes - 800 mm Depth: 1.51m - 2.50m; Stormwater Utilities - GRP Pipes - 800 mm Depth: 2.51m - 3.50m; Stormwater Utilities - GRP Pipes - 800 mm Depth exceeds 3.50m; Labor [300 h]; Skilled Labor [150 h]; Pipe Fitter [150 h]; Stormwater Utilities - GRP Pipes - 500 mm Depth: 1.51m - 2.50m [33.23]; Stormwater Utilities - GRP Pipes - 500 mm Depth: 2.51m - 3.50m [13.87] | 32,695.5 | 32,695.5 | A15090 | 1 | L08 |
| CON-LEG101-LR-4190 |  | Installation of Micron Marker Magnetic Tape [Local – 08 ] | 4d | 2026-02-28 A | 2026-03-05 A | CON-LEG101-LR-4080 | 100% |  | 2026-05-09 | 2026-05-13 |  |  | Stormwater Utilities - GRP Pipes - 400 mm Diameter Depth: 0.00 m - 1.50 m.; Stormwater Utilities - GRP Pipes - 400 mm Depth: 1.51m - 2.50m; Stormwater Utilities - GRP Pipes - 400 mm Depth exceeds 2.50m; Stormwater Utilities - GRP Pipes - 500 mm Depth: 0.00 m - 1.50 m.; Stormwater Utilities - GRP Pipes - 500 mm Depth: 3.51m - 4.50m; Stormwater Utilities - GRP Pipes - 500 mm Depth exceeds 4.50m; Stormwater Utilities - GRP Pipes - 600 mm Depth: 1.51m - 2.50m; Stormwater Utilities - GRP Pipes - 600 mm Depth: 2.51m - 3.50m; Stormwater Utilities - GRP Pipes - 600 mm Depth: 3.51m - 4.50m; Stormwater Utilities - GRP Pipes - 600 mm Depth exceeds 4.50m; Stormwater Utilities - GRP Pipes - 700 mm Depth: 1.51m - 2.50m; Stormwater Utilities - GRP Pipes - 700 mm Depth: 2.51m - 3.50m; Stormwater Utilities - GRP Pipes - 700 mm Depth exceeds 3.50m; Stormwater Utilities - GRP Pipes - 800 mm Depth: 1.51m - 2.50m; Stormwater Utilities - GRP Pipes - 800 mm Depth: 2.51m - 3.50m; Stormwater Utilities - GRP Pipes - 800 mm Depth exceeds 3.50m; Labor [100 h]; Stormwater Utilities - GRP Pipes - 500 mm Depth: 1.51m - 2.50m [16.62]; Stormwater Utilities - GRP Pipes - 500 mm Depth: 2.51m - 3.50m [6.93] | 16,347 | 16,347 | A15310 | 1 | L08 |
| CON-LEG101-LR-4300 |  | Backfilling to Subgrade Elevation [Local – 08 ] | 7d | 2026-02-28 A | 2026-03-07 A | CON-LEG101-LR-4190, CON-LEG101-EN-3440 | 100% |  | 2026-05-13 | 2026-05-21 |  |  | Stormwater Utilities - GRP Pipes - 400 mm Diameter Depth: 0.00 m - 1.50 m.; Stormwater Utilities - GRP Pipes - 400 mm Depth: 1.51m - 2.50m; Stormwater Utilities - GRP Pipes - 400 mm Depth exceeds 2.50m; Stormwater Utilities - GRP Pipes - 500 mm Depth: 0.00 m - 1.50 m.; Stormwater Utilities - GRP Pipes - 500 mm Depth: 3.51m - 4.50m; Stormwater Utilities - GRP Pipes - 500 mm Depth exceeds 4.50m; Stormwater Utilities - GRP Pipes - 600 mm Depth: 1.51m - 2.50m; Stormwater Utilities - GRP Pipes - 600 mm Depth: 2.51m - 3.50m; Stormwater Utilities - GRP Pipes - 600 mm Depth: 3.51m - 4.50m; Stormwater Utilities - GRP Pipes - 600 mm Depth exceeds 4.50m; Stormwater Utilities - GRP Pipes - 700 mm Depth: 1.51m - 2.50m; Stormwater Utilities - GRP Pipes - 700 mm Depth: 2.51m - 3.50m; Stormwater Utilities - GRP Pipes - 700 mm Depth exceeds 3.50m; Stormwater Utilities - GRP Pipes - 800 mm Depth: 1.51m - 2.50m; Stormwater Utilities - GRP Pipes - 800 mm Depth: 2.51m - 3.50m; Stormwater Utilities - GRP Pipes - 800 mm Depth exceeds 3.50m; Excavator [48 h]; Water Tanker [48 h]; Road Roller [48 h]; Bucket [48 h]; Compactor [48 h]; Labor [100 h]; Driver [50 h]; Eq. Operator [200 h]; Stormwater Utilities - GRP Pipes - 500 mm Depth: 1.51m - 2.50m [33.23]; Stormwater Utilities - GRP Pipes - 500 mm Depth: 2.51m - 3.50m [13.87] | 32,695.5 | 32,695.5 | A15420 | 1 | L08 |
|  | 1 | **Manhole** |  | 2026-01-17 | 2027-01-07 |  |  |  |  |  |  |  |  |  |  |  |  |  |
| CON-LEG101-LR-11720 |  | Excavation of Inlet Manholes [Local – 08 ] | 10d | 2026-01-17 A | 2026-01-21 A | CON-LEG101-LR-3670 | 100% |  | 2026-04-14 | 2026-04-26 |  |  | Stormwater Utilities - (ring 1200 mm internal dia.) MH depth 2.51 - 3.50m [0.52]; Stormwater Utilities - (ring 1200 mm internal dia.) MH depth 3.51 - 4.50m [0.5]; Stormwater Utilities - (ring 1200 mm internal dia.) MH depth 1.51 - 2.50m; Stormwater Utilities - (ring 1200 mm internal dia.) MH depth exceeds 4.50m; Stormwater Utilities - (ring 1500 mm internal dia.) MH depth exceeds 3.50m; Stormwater Utilities - (ring 1500 mm internal dia.) MH depth 1.51 - 2.50m; Stormwater Utilities - (ring 1500 mm internal dia.) MH depth 2.51 - 3.50m | 21,600 | 21,600 |  | 1 | L08 |
| CON-LEG101-LR-11730 |  | PC of Inlet Manholes [Local – 08 ] | 3d | 2026-01-25 A | 2026-01-31 A | CON-LEG101-LR-11720 | 100% |  | 2026-04-05 | 2026-04-08 |  |  | Stormwater Utilities - (ring 1200 mm internal dia.) MH depth 2.51 - 3.50m [0.34]; Stormwater Utilities - (ring 1200 mm internal dia.) MH depth 3.51 - 4.50m [0.34]; Stormwater Utilities - (ring 1200 mm internal dia.) MH depth 1.51 - 2.50m; Stormwater Utilities - (ring 1200 mm internal dia.) MH depth exceeds 4.50m; Stormwater Utilities - (ring 1500 mm internal dia.) MH depth exceeds 3.50m; Stormwater Utilities - (ring 1500 mm internal dia.) MH depth 1.51 - 2.50m; Stormwater Utilities - (ring 1500 mm internal dia.) MH depth 2.51 - 3.50m | 14,450 | 14,450 |  | 1 | L08 |
| CON-LEG101-LR-4410 |  | Installation of Inlet Manholes [Local – 08 ] | 14d | 2026-01-29 A | 2026-06-01 A | CON-LEG101-LR-11730, CON-LEG101-LR-3870, CON-LEG101-PR-1980 | 100% |  | 2026-06-16 | 2026-07-01 |  |  | Stormwater Utilities - (ring 1200 mm internal dia.) MH depth 1.51 - 2.50m; Stormwater Utilities - (ring 1200 mm internal dia.) MH depth exceeds 4.50m; Stormwater Utilities - (ring 1500 mm internal dia.) MH depth exceeds 3.50m; Stormwater Utilities - (ring 1500 mm internal dia.) MH depth 1.51 - 2.50m; Stormwater Utilities - (ring 1500 mm internal dia.) MH depth 2.51 - 3.50m; Stormwater Utilities - (ring 1200 mm internal dia.) MH depth 2.51 - 3.50m [1.54]; Stormwater Utilities - (ring 1200 mm internal dia.) MH depth 3.51 - 4.50m [1.51]; Excavator [48 h]; Bucket [48 h]; Compactor [48 h]; Labor [100 h]; Eq. Operator [150 h]; Pipe Fitter [100 h] | 64,700 | 64,700 | A15640 | 1 | L08 |
| CON-LEG101-LR-11740 |  | Backfilling of Inlet Manholes [Local – 08 ] | 10d | 2026-03-25 A | 2026-06-04 A | CON-LEG101-LR-4410 | 100% |  | 2026-06-03 | 2026-06-15 |  |  | Stormwater Utilities - (ring 1200 mm internal dia.) MH depth 2.51 - 3.50m [0.68]; Stormwater Utilities - (ring 1200 mm internal dia.) MH depth 3.51 - 4.50m [0.67]; Stormwater Utilities - (ring 1200 mm internal dia.) MH depth 1.51 - 2.50m; Stormwater Utilities - (ring 1200 mm internal dia.) MH depth exceeds 4.50m; Stormwater Utilities - (ring 1500 mm internal dia.) MH depth exceeds 3.50m; Stormwater Utilities - (ring 1500 mm internal dia.) MH depth 1.51 - 2.50m; Stormwater Utilities - (ring 1500 mm internal dia.) MH depth 2.51 - 3.50m | 28,650 | 28,650 |  | 1 | L08 |
| CON-LEG101-LR-11750 |  | Finishing and Testing of Inlet Manholes [Local – 08 ] | 10d | 2026-08-26 A | 2027-01-07 | CON-LEG101-LR-11740, CON-LEG101-LR-4410, CON-LEG101-LR-11660 | 95% | 0.5d | 2026-11-01 | 2026-11-12 | 62.7d | 21.05d | Stormwater Utilities - (ring 1200 mm internal dia.) MH depth 2.51 - 3.50m [0.34]; Stormwater Utilities - (ring 1200 mm internal dia.) MH depth 3.51 - 4.50m [0.34]; Stormwater Utilities - (ring 1200 mm internal dia.) MH depth 1.51 - 2.50m; Stormwater Utilities - (ring 1200 mm internal dia.) MH depth exceeds 4.50m; Stormwater Utilities - (ring 1500 mm internal dia.) MH depth exceeds 3.50m; Stormwater Utilities - (ring 1500 mm internal dia.) MH depth 1.51 - 2.50m; Stormwater Utilities - (ring 1500 mm internal dia.) MH depth 2.51 - 3.50m | 14,450 | 13,727.5 |  | 0.9 | L08 |
|  | 3 | **Concrete Chambers/Outfalls** |  | 2026-06-09 | 2027-02-01 |  |  |  |  |  |  |  |  |  |  |  |  |  |
| CON-LEG101-LR-11760 |  | Excavation of Concrete chambers [Local – 08 ] | 6d | 2026-06-09 A | 2026-06-24 A | CON-LEG101-LR-4410 | 100% |  | 2026-07-15 | 2026-07-21 |  |  | Single Catch basin as per drawings [0.9]; Double Catch basin as per drawings [0.32]; Curb inlet catch basin [0.55] | 16,940 | 16,940 |  | 1 | L08 |
| CON-LEG101-LR-11770 |  | PC of Concrete chambers [Local – 08 ] | 2d | 2026-06-11 A | 2026-06-25 A | CON-LEG101-LR-11760 | 100% |  | 2026-07-20 | 2026-07-22 |  |  | Single Catch basin as per drawings [0.6]; Double Catch basin as per drawings [0.21]; Curb inlet catch basin [0.37] | 11,300 | 11,300 |  | 1 | L08 |
| CON-LEG101-LR-11780 |  | Installation UPVC Pipes to Concrete chambers [Local – 08 ] | 10d | 2026-06-13 A | 2026-06-28 A | CON-LEG101-LR-11760, CON-LEG101-LR-4510 | 100% |  | 2026-08-05 | 2026-08-17 |  |  | Stormwater Utilities - PVC Pipes - 300 mm Diameter Depth: 0.00 m - 1.50 m. [63.01]; Stormwater Utilities - PVC Pipes - 300 mm Diameter Depth: 1.51m - 2.50m [92.32]; Stormwater Utilities - PVC Pipes - 500 mm Depth: 1.51m - 2.50m [28.52]; Stormwater Utilities - PVC Pipes - 300 mm Diameter Depth exceeds 2.50m; Stormwater Utilities - PVC Pipes - 400 mm Diameter Depth: 0.00 m - 1.50 m.; Stormwater Utilities - PVC Pipes - 500 mm Depth: 0.00 m - 1.50 m.; Stormwater Utilities - PVC Pipes - 400 mm Diameter Depth: 1.51m - 2.50m; Stormwater Utilities - PVC Pipes - 400 mm Diameter Depth exceeds 2.50m; Stormwater Utilities - PVC Pipes - 500 mm Depth exceeds 2.50m | 87,282.4 | 87,282.4 |  | 1 | L08 |
| CON-LEG101-LR-4510 |  | Installation of Concrete chambers [Local – 08 ] | 12d | 2026-06-13 A | 2026-06-27 A | CON-LEG101-LR-11770, CON-LEG101-LR-3870, CON-LEG101-PR-1990 | 100% |  | 2026-07-22 | 2026-08-05 |  |  | Single Catch basin as per drawings [2.69]; Double Catch basin as per drawings [0.96]; Curb inlet catch basin [1.65]; Excavator [36 h]; Labor [100 h]; Skilled Labor [50 h]; Eq. Operator [50 h]; Pipe Fitter [50 h] | 50,760 | 50,760 | A15790 | 1 | L08 |
| CON-LEG101-LR-11790 |  | Backfilling to Concrete chambers [Local – 08 ] | 6d | 2026-06-17 A | 2026-06-30 A | CON-LEG101-LR-11780, CON-LEG101-LR-4510 | 100% |  | 2026-08-17 | 2026-08-24 |  |  | Single Catch basin as per drawings [1.19]; Double Catch basin as per drawings [0.43]; Curb inlet catch basin [0.74] | 22,660 | 22,660 |  | 1 | L08 |
| CON-LEG101-LR-11800 |  | FInishing and Testing of Concrete chambers [Local – 08 ] | 11d | 2026-08-26 A | 2027-02-01 | CON-LEG101-LR-11780, CON-LEG101-LR-11790, CON-LEG101-LR-4510, CON-LEG101-LR-11710 | 95% | 0.55d | 2026-11-24 | 2026-12-06 | 41.65d | 0d | Single Catch basin as per drawings [0.6]; Double Catch basin as per drawings [0.21]; Curb inlet catch basin [0.37] | 11,300 | 10,735 |  | 0.9 | L08 |
|  | 7 | **Shallow infrastructure network** |  | 2026-01-13 | 2027-10-17 |  |  |  |  |  |  |  |  |  |  |  |  |  |
|  | 1 | **Local – 01** |  | 2026-01-13 | 2027-08-05 |  |  |  |  |  |  |  |  |  |  |  |  |  |
|  | 1 | **LOCAL - 01 Segment-01 (From 0+000 to 1+066)** |  | 2026-01-13 | 2027-07-31 |  |  |  |  |  |  |  |  |  |  |  |  |  |
|  | 5 | **TSE Network** |  | 2026-01-13 | 2026-09-05 |  |  |  |  |  |  |  |  |  |  |  |  |  |
|  | 2 | **Pipe Work** |  | 2026-01-13 | 2026-05-04 |  |  |  |  |  |  |  |  |  |  |  |  |  |
| CON-LEG101-LR-1300 |  | Excavation for TSE Network [Local – 01 Segment-01] | 15d | 2026-01-13 A | 2026-01-21 A | CON-LEG101-LR-3410, CON-LEG101-LR-10910, CON-LEG101-LR-4200, CON-LEG101-LR-2780, CON-LEG101-EN-1720, CON-LEG101-EN-1730, CON-LEG101-EN-1740, CON-LEG101-EN-1810 | 100% |  | 2026-07-06 | 2026-07-23 |  |  | Excavator [48 h]; Water Tanker [48 h]; Truck [96 h]; Crane [48 h]; Labor [200 h]; Driver [150 h]; Eq. Operator [100 h]; Piping TSE Network - 110mm Diameter Depth: 0.00 m - 1.50 m. [6.75]; Piping TSE Network - 110mm Diameter Depth: 1.51m - 2.50m [10.14]; Piping TSE Network - 110mm Diameter Depth exceeds 2.50m [2.68]; Piping TSE Network - 160mm Diameter Depth: 0.00 m - 1.50 m. [18.26]; Piping TSE Network - 160mm Diameter Depth: 1.51m - 2.50m [54.14]; Piping TSE Network - 160mm Diameter Depth exceeds 2.50m [2.68]; Piping TSE Network - 200mm Diameter Depth: 0.00 m - 1.50 m. [18.63]; Piping TSE Network - 200mm Diameter Depth: 1.51m - 2.50m [35.91]; Piping TSE Network - 200mm Diameter Depth: 2.51m - 3.50m; Piping TSE Network - 200mm Diameter Depth exceeds 3.50m; Piping TSE Network - 250mm Diameter Depth: 0.00 m - 1.50 m.; Piping TSE Network - 250mm Diameter Depth: 1.51m - 2.50m; Piping TSE Network - 250mm Diameter Depth exceeds 2.50m | 44,285.5 | 44,285.5 | A10940 | 1 | L01 -01 |
| CON-LEG101-LR-1410 |  | Granular bedding for TSE Network [Local – 01 Segment-01] | 12d | 2026-01-14 A | 2026-01-22 A | CON-LEG101-LR-1300 | 100% |  | 2026-07-23 | 2026-08-06 |  |  | Loader [48 h]; Truck [48 h]; Driver [50 h]; Eq. Operator [50 h]; Piping TSE Network - 110mm Diameter Depth: 0.00 m - 1.50 m. [1.73]; Piping TSE Network - 110mm Diameter Depth: 1.51m - 2.50m [2.54]; Piping TSE Network - 110mm Diameter Depth exceeds 2.50m [0.67]; Piping TSE Network - 160mm Diameter Depth: 0.00 m - 1.50 m. [4.56]; Piping TSE Network - 160mm Diameter Depth: 1.51m - 2.50m [13.53]; Piping TSE Network - 160mm Diameter Depth exceeds 2.50m [0.67]; Piping TSE Network - 200mm Diameter Depth: 0.00 m - 1.50 m. [4.66]; Piping TSE Network - 200mm Diameter Depth: 1.51m - 2.50m [8.98]; Piping TSE Network - 200mm Diameter Depth: 2.51m - 3.50m; Piping TSE Network - 200mm Diameter Depth exceeds 3.50m; Piping TSE Network - 250mm Diameter Depth: 0.00 m - 1.50 m.; Piping TSE Network - 250mm Diameter Depth: 1.51m - 2.50m; Piping TSE Network - 250mm Diameter Depth exceeds 2.50m | 11,079.2 | 11,079.2 | A11060 | 1 | L01 -01 |
| CON-LEG101-LR-1520 |  | Installation of Pipe for TSE Network [Local – 01 Segment-01] | 20d | 2026-01-15 A | 2026-02-19 A | CON-LEG101-PR-2590, CON-LEG101-LR-1410, CON-LEG101-PR-1690 | 100% |  | 2026-07-26 | 2026-08-18 |  |  | Excavator [39.6 h]; Crane [48 h]; Labor [150 h]; Skilled Labor [100 h]; Eq. Operator [100 h]; Plumber [50 h]; Pipe Fitter [50 h]; Piping TSE Network - 110mm Diameter Depth: 0.00 m - 1.50 m. [15.53]; Piping TSE Network - 110mm Diameter Depth: 1.51m - 2.50m [22.83]; Piping TSE Network - 110mm Diameter Depth exceeds 2.50m [6.03]; Piping TSE Network - 160mm Diameter Depth: 0.00 m - 1.50 m. [41.08]; Piping TSE Network - 160mm Diameter Depth: 1.51m - 2.50m [121.81]; Piping TSE Network - 160mm Diameter Depth exceeds 2.50m [6.03]; Piping TSE Network - 200mm Diameter Depth: 0.00 m - 1.50 m. [41.92]; Piping TSE Network - 200mm Diameter Depth: 1.51m - 2.50m [80.81]; Piping TSE Network - 200mm Diameter Depth: 2.51m - 3.50m; Piping TSE Network - 200mm Diameter Depth exceeds 3.50m; Piping TSE Network - 250mm Diameter Depth: 0.00 m - 1.50 m.; Piping TSE Network - 250mm Diameter Depth: 1.51m - 2.50m; Piping TSE Network - 250mm Diameter Depth exceeds 2.50m | 99,710.2 | 99,710.2 | A11180 | 1 | L01 -01 |
| CON-LEG101-LR-1850 |  | Granular Surround for TSE Network [Local – 01 Segment-01] | 14d | 2026-01-25 A | 2026-02-19 A | CON-LEG101-LR-1750, CON-LEG101-EN-3450 | 100% |  | 2026-07-23 | 2026-08-08 |  |  | Loader [48 h]; Truck [48 h]; Driver [50 h]; Eq. Operator [50 h]; Piping TSE Network - 110mm Diameter Depth: 0.00 m - 1.50 m. [1.73]; Piping TSE Network - 110mm Diameter Depth: 1.51m - 2.50m [2.54]; Piping TSE Network - 110mm Diameter Depth exceeds 2.50m [0.67]; Piping TSE Network - 160mm Diameter Depth: 0.00 m - 1.50 m. [4.56]; Piping TSE Network - 160mm Diameter Depth: 1.51m - 2.50m [13.53]; Piping TSE Network - 160mm Diameter Depth exceeds 2.50m [0.67]; Piping TSE Network - 200mm Diameter Depth: 0.00 m - 1.50 m. [4.66]; Piping TSE Network - 200mm Diameter Depth: 1.51m - 2.50m [8.98]; Piping TSE Network - 200mm Diameter Depth: 2.51m - 3.50m; Piping TSE Network - 200mm Diameter Depth exceeds 3.50m; Piping TSE Network - 250mm Diameter Depth: 0.00 m - 1.50 m.; Piping TSE Network - 250mm Diameter Depth: 1.51m - 2.50m; Piping TSE Network - 250mm Diameter Depth exceeds 2.50m | 11,079.2 | 11,079.2 | A11550 | 1 | L01 -01 |
| CON-LEG101-LR-1960 |  | Installation of Micron Marker Magnetic Tape [Local – 01 Segment-01] | 6d | 2026-02-07 A | 2026-02-21 A | CON-LEG101-LR-1850 | 100% |  | 2026-06-04 | 2026-06-11 |  |  | Labor [100 h]; Piping TSE Network - 110mm Diameter Depth: 0.00 m - 1.50 m. [1.73]; Piping TSE Network - 110mm Diameter Depth: 1.51m - 2.50m [2.54]; Piping TSE Network - 110mm Diameter Depth exceeds 2.50m [0.67]; Piping TSE Network - 160mm Diameter Depth: 0.00 m - 1.50 m. [4.56]; Piping TSE Network - 160mm Diameter Depth: 1.51m - 2.50m [13.53]; Piping TSE Network - 160mm Diameter Depth exceeds 2.50m [0.67]; Piping TSE Network - 200mm Diameter Depth: 0.00 m - 1.50 m. [4.66]; Piping TSE Network - 200mm Diameter Depth: 1.51m - 2.50m [8.98]; Piping TSE Network - 200mm Diameter Depth: 2.51m - 3.50m; Piping TSE Network - 200mm Diameter Depth exceeds 3.50m; Piping TSE Network - 250mm Diameter Depth: 0.00 m - 1.50 m.; Piping TSE Network - 250mm Diameter Depth: 1.51m - 2.50m; Piping TSE Network - 250mm Diameter Depth exceeds 2.50m | 11,079.2 | 11,079.2 | A11670 | 1 | L01 -01 |
| CON-LEG101-LR-2070 |  | Backfilling to Subgrade Elevation [Local – 01 Segment-01] | 14d | 2026-02-08 A | 2026-02-23 A | CON-LEG101-LR-1960, CON-LEG101-EN-3440, CON-LEG101-MS-1120 | 100% |  | 2026-10-21 | 2026-11-05 |  |  | Piping TSE Network - 200mm Diameter Depth: 2.51m - 3.50m; Piping TSE Network - 200mm Diameter Depth exceeds 3.50m; Piping TSE Network - 250mm Diameter Depth: 0.00 m - 1.50 m.; Piping TSE Network - 250mm Diameter Depth: 1.51m - 2.50m; Piping TSE Network - 250mm Diameter Depth exceeds 2.50m; Excavator [96 h]; Water Tanker [96 h]; Road Roller [96 h]; Bucket [113.71 h]; Compactor [213.71 h]; Labor [228.57 h]; Driver [114.29 h]; Eq. Operator [400 h]; Piping TSE Network - 110mm Diameter Depth: 0.00 m - 1.50 m. [3.45]; Piping TSE Network - 110mm Diameter Depth: 1.51m - 2.50m [5.07]; Piping TSE Network - 110mm Diameter Depth exceeds 2.50m [1.34]; Piping TSE Network - 160mm Diameter Depth: 0.00 m - 1.50 m. [9.13]; Piping TSE Network - 160mm Diameter Depth: 1.51m - 2.50m [27.07]; Piping TSE Network - 160mm Diameter Depth exceeds 2.50m [1.34]; Piping TSE Network - 200mm Diameter Depth: 0.00 m - 1.50 m. [9.32]; Piping TSE Network - 200mm Diameter Depth: 1.51m - 2.50m [17.96] | 22,159.1 | 22,159.1 | A11790 | 1 | L01 -01 |
| CON-LEG101-LR-1750 |  | Concrete encasement, pipe dia 110 mm [Local – 01 Segment-01] | 3d | 2026-02-28 A | 2026-03-01 A | CON-LEG101-LR-1640, CON-LEG101-EN-3450, CON-LEG101-PR-1430 | 100% |  | 2026-05-17 | 2026-05-20 |  |  | Labor [200 h]; Carpenter [50 h]; Mason [100 h]; Piping TSE Network - Concrete encasement, pipe dia 110 mm [4.56] | 1,596 | 1,596 | A11450 | 1 | L01 -01 |
| CON-LEG101-LR-1640 |  | Testing for TSE Network [Local – 01 Segment-01] | 14d | 2026-03-10 A | 2026-05-04 A | CON-LEG101-LR-1520 | 100% |  | 2026-04-29 | 2026-05-16 |  |  | Labor [200 h]; Skilled Labor [100 h]; Pipe Fitter [100 h]; Piping TSE Network - 110mm Diameter Depth: 0.00 m - 1.50 m. [3.45]; Piping TSE Network - 110mm Diameter Depth: 1.51m - 2.50m [5.07]; Piping TSE Network - 110mm Diameter Depth exceeds 2.50m [1.34]; Piping TSE Network - 160mm Diameter Depth: 0.00 m - 1.50 m. [9.13]; Piping TSE Network - 160mm Diameter Depth: 1.51m - 2.50m [27.07]; Piping TSE Network - 160mm Diameter Depth exceeds 2.50m [1.34]; Piping TSE Network - 200mm Diameter Depth: 0.00 m - 1.50 m. [9.32]; Piping TSE Network - 200mm Diameter Depth: 1.51m - 2.50m [17.96]; Piping TSE Network - 200mm Diameter Depth: 2.51m - 3.50m; Piping TSE Network - 200mm Diameter Depth exceeds 3.50m; Piping TSE Network - 250mm Diameter Depth: 0.00 m - 1.50 m.; Piping TSE Network - 250mm Diameter Depth: 1.51m - 2.50m; Piping TSE Network - 250mm Diameter Depth exceeds 2.50m | 22,159.1 | 22,159.1 | A11300 | 1 | L01 -01 |

| ID | WBS | Activity | Duration | Start | Finish | Predecessors | Complete | Remaining | Planned start | Planned finish | Total float | Free float | Resources | Cost | Actual cost | Mapping Sheet Activity ID | % A | JEDDAH 1 - Area Name |
| --- | --- | --- | --- | --- | --- | --- | --- | --- | --- | --- | --- | --- | --- | --- | --- | --- | --- | --- |
|  | 1 | **Valves/Chamber** |  | 2026-02-25 | 2026-09-05 |  |  |  |  |  |  |  |  |  |  |  |  |  |
| CON-LEG101-LR-2460 |  | Installation of Fire Hydrant [Local – 01 Segment-01] | 21d | 2026-02-25 A | 2026-07-01 A | CON-LEG101-LR-1520, CON-LEG101-LR-2380, CON-LEG101-PR-2470 | 100% |  | 2027-01-06 | 2027-01-30 |  |  | Piping TSE Network - 3-outlet fire hydrant (2 x 2.5 inch and 1 x 4.5 inch) in the form of a separate dry vacuum cylinder [9.38]; Excavator [48 h]; Labor [150 h]; Skilled Labor [50 h]; Eq. Operator [50 h]; Mason [50 h]; Pipe Fitter [50 h] | 84,420 | 84,420 | A12450 | 1 | L01 -01 |
| CON-LEG101-LR-2190 |  | Installation of Gate (Sluice) valves (Direct buried) [Local – 01 Segment-01] | 21d | 2026-02-28 A | 2026-07-02 A | CON-LEG101-LR-2680, CON-LEG101-LR-1520, CON-LEG101-PR-1970, CON-LEG101-MS-1120 | 100% |  | 2026-11-08 | 2026-12-01 |  |  | Piping TSE Network - Gate valves, on pipe with diameter 250 mm [0.67]; Excavator [48 h]; Labor [100 h]; Skilled Labor [50 h]; Eq. Operator [50 h]; Pipe Fitter [50 h]; Piping TSE Network - Gate valves, on pipe with diameter 110 mm [7.37]; Piping TSE Network - Gate valves, on pipe with diameter 160 mm [1.34]; Piping TSE Network - Gate valves, on pipe with diameter 200 mm [1.34] | 48,910 | 48,910 | A12000 | 1 | L01 -01 |
| CON-LEG101-LR-2310 |  | Installation of Wash-out Valves [Local – 01 Segment-01] | 15d | 2026-02-28 A | 2026-07-02 A | CON-LEG101-LR-2190, CON-LEG101-PR-1970 | 100% |  | 2026-12-02 | 2026-12-19 |  |  | Excavator [48 h]; Labor [400 h]; Skilled Labor [50 h]; Eq. Operator [50 h]; Pipe Fitter [50 h]; Piping TSE Network - Wash out valve, on pipes with diameter 110-400 mm [0.67] | 8,040 | 8,040 | A12220 | 1 | L01 -01 |
| CON-LEG101-LR-2380 |  | Installation of Air Valves [Local – 01 Segment-01] | 15d | 2026-02-28 A | 2026-07-02 A | CON-LEG101-LR-2310, CON-LEG101-PR-1970 | 100% |  | 2026-12-20 | 2027-01-05 |  |  | Excavator [48 h]; Labor [200 h]; Skilled Labor [50 h]; Eq. Operator [50 h]; Pipe Fitter [50 h]; Piping TSE Network - Air valve complete with gate valves, on pipes with diameter less than 315 mm. [0.67] | 6,030 | 6,030 | A12330 | 1 | L01 -01 |
| CON-LEG101-LR-2680 |  | Installation of Air Valve chambers [Local – 01 Segment-01] | 21d | 2026-02-28 A | 2026-09-05 A | CON-LEG101-LR-2610, CON-LEG101-PR-1970 | 100% |  | 2026-05-19 | 2026-06-17 |  |  | Excavator [37.71 h]; Labor [100 h]; Skilled Labor [50 h]; Eq. Operator [50 h]; Pipe Fitter [50 h]; Piping TSE Network - Air valve chamber; on less than 315 mm diameter pipeline [0.67] | 26,800 | 26,800 | A12800 | 1 | L01 -01 |
| CON-LEG101-LR-2610 |  | Installation of Wash out chambers [Local – 01 Segment-01] | 21d | 2026-04-21 A | 2026-09-03 A | CON-LEG101-LR-1520, CON-LEG101-PR-1970 | 100% |  | 2026-05-21 | 2026-06-20 |  |  | Excavator [21 h]; Labor [100 h]; Skilled Labor [50 h]; Eq. Operator [50 h]; Pipe Fitter [50 h]; Piping TSE Network - Wash out valve chamber; on 110-400 mm diameter pipeline [0.67] | 26,800 | 26,800 | A12690 | 1 | L01 -01 |
|  | 6 | **Public Water Utility Distribution** |  | 2026-01-13 | 2026-09-05 |  |  |  |  |  |  |  |  |  |  |  |  |  |
|  | 2 | **Pipe Work** |  | 2026-01-13 | 2026-03-24 |  |  |  |  |  |  |  |  |  |  |  |  |  |
| CON-LEG101-LR-10040 |  | Excavation for Public Water Utility Distribution Piping [Local – 01 Segment-01] | 17d | 2026-01-13 A | 2026-01-21 A | CON-LEG101-LR-1300, CON-LEG101-EN-1690, CON-LEG101-EN-1700, CON-LEG101-EN-1710, CON-LEG101-EN-3440 | 100% |  | 2026-07-23 | 2026-08-12 |  |  | Public Water - 110mm Diameter Depth: 0.00 m - 1.50 m. [2.89]; Public Water - 110mm Diameter Depth: 1.51 m - 2.50 m. [1.88]; Public Water - 200mm Diameter Depth: 0.00m -1.50m [95]; Excavator [48 h]; Water Tanker [48 h]; Truck [96 h]; Crane [48 h]; Labor [200 h]; Driver [150 h]; Eq. Operator [100 h]; Public Water - 200mm Diameter Depth: 1.51m - 2.50m [42.5]; Public Water - 110mm Diameter Depth exceeds 2.50m; Public Water - 160mm Diameter Depth: 1.51m - 2.50m; Public Water - Gate valves, on pipe with diameter 110 mm; Public Water - Gate valves, on pipe with diameter 160 mm; Public Water - Gate valves, on pipe with diameter 200 mm; Public Water - 160mm Diameter Depth: 0.00 m - 1.50 m.; Public Water - 160mm Diameter Depth exceeds 2.50m; Public Water - 200mm Diameter Depth exceeds 2.50m; Public Water - 400mm Diameter Depth: 0.00m -1.50m; Public Water - 400mm Diameter Depth: 1.51m - 2.50m; Public Water - 400mm Diameter Depth exceeds 2.50m | 37,852.8 | 37,852.8 | A9020 | 1 | L01 -01 |
| CON-LEG101-LR-10140 |  | Granular bedding for Public Water Utility Distribution Piping [Local – 01 Segment-01] | 10d | 2026-01-13 A | 2026-01-22 A | CON-LEG101-LR-10040 | 100% |  | 2026-08-12 | 2026-08-24 |  |  | Public Water - 110mm Diameter Depth: 0.00 m - 1.50 m. [0.7]; Public Water - 110mm Diameter Depth: 1.51 m - 2.50 m. [0.47]; Public Water - 200mm Diameter Depth: 0.00m -1.50m [23.74]; Loader [48 h]; Truck [48 h]; Driver [50 h]; Eq. Operator [50 h]; Public Water - 200mm Diameter Depth: 1.51m - 2.50m [10.6]; Public Water - 110mm Diameter Depth exceeds 2.50m; Public Water - 160mm Diameter Depth: 1.51m - 2.50m; Public Water - Gate valves, on pipe with diameter 110 mm; Public Water - Gate valves, on pipe with diameter 160 mm; Public Water - Gate valves, on pipe with diameter 200 mm; Public Water - 160mm Diameter Depth: 0.00 m - 1.50 m.; Public Water - 160mm Diameter Depth exceeds 2.50m; Public Water - 200mm Diameter Depth exceeds 2.50m; Public Water - 400mm Diameter Depth: 0.00m -1.50m; Public Water - 400mm Diameter Depth: 1.51m - 2.50m; Public Water - 400mm Diameter Depth exceeds 2.50m | 9,448.5 | 9,448.5 | A9140 | 1 | L01 -01 |
| CON-LEG101-LR-10240 |  | Installation of Pipe for Public Water Utility Distribution Piping [Local – 01 Segment-01] | 18d | 2026-01-15 A | 2026-02-19 A | CON-LEG101-PR-4010, CON-LEG101-LR-10140, CON-LEG101-PR-1660 | 100% |  | 2026-08-08 | 2026-08-29 |  |  | Public Water - 110mm Diameter Depth: 0.00 m - 1.50 m. [6.49]; Public Water - 110mm Diameter Depth: 1.51 m - 2.50 m. [4.23]; Public Water - 200mm Diameter Depth: 0.00m -1.50m [213.72]; Excavator [18 h]; Crane [48 h]; Labor [150 h]; Skilled Labor [100 h]; Eq. Operator [100 h]; Plumber [50 h]; Pipe Fitter [50 h]; Public Water - 200mm Diameter Depth: 1.51m - 2.50m [95.62]; Public Water - 110mm Diameter Depth exceeds 2.50m; Public Water - 160mm Diameter Depth: 1.51m - 2.50m; Public Water - Gate valves, on pipe with diameter 110 mm; Public Water - Gate valves, on pipe with diameter 160 mm; Public Water - Gate valves, on pipe with diameter 200 mm; Public Water - 160mm Diameter Depth: 0.00 m - 1.50 m.; Public Water - 160mm Diameter Depth exceeds 2.50m; Public Water - 200mm Diameter Depth exceeds 2.50m; Public Water - 400mm Diameter Depth: 0.00m -1.50m; Public Water - 400mm Diameter Depth: 1.51m - 2.50m; Public Water - 400mm Diameter Depth exceeds 2.50m | 85,157.7 | 85,157.7 | A9260 | 1 | L01 -01 |
| CON-LEG101-LR-10540 |  | Granular Surround for Public Water Utility Distribution Piping [Local – 01 Segment-01] | 13d | 2026-01-26 A | 2026-02-19 A | CON-LEG101-LR-10440, CON-LEG101-EN-3450 | 100% |  | 2026-07-19 | 2026-08-03 |  |  | Public Water - 110mm Diameter Depth: 0.00 m - 1.50 m. [0.72]; Public Water - 110mm Diameter Depth: 1.51 m - 2.50 m. [0.47]; Public Water - 200mm Diameter Depth: 0.00m -1.50m [23.74]; Loader [48 h]; Truck [48 h]; Driver [50 h]; Eq. Operator [50 h]; Public Water - 200mm Diameter Depth: 1.51m - 2.50m [10.63]; Public Water - 110mm Diameter Depth exceeds 2.50m; Public Water - 160mm Diameter Depth: 1.51m - 2.50m; Public Water - Gate valves, on pipe with diameter 110 mm; Public Water - Gate valves, on pipe with diameter 160 mm; Public Water - Gate valves, on pipe with diameter 200 mm; Public Water - 160mm Diameter Depth: 0.00 m - 1.50 m.; Public Water - 160mm Diameter Depth exceeds 2.50m; Public Water - 200mm Diameter Depth exceeds 2.50m; Public Water - 400mm Diameter Depth: 0.00m -1.50m; Public Water - 400mm Diameter Depth: 1.51m - 2.50m; Public Water - 400mm Diameter Depth exceeds 2.50m | 9,462 | 9,462 | A9650 | 1 | L01 -01 |
| CON-LEG101-LR-10640 |  | Installation of Micron Marker Magnetic Tape [Local – 01 Segment-01] | 2d | 2026-02-07 A | 2026-02-21 A | CON-LEG101-LR-10540 | 100% |  | 2026-05-26 | 2026-06-02 |  |  | Public Water - 110mm Diameter Depth: 0.00 m - 1.50 m. [0.72]; Public Water - 110mm Diameter Depth: 1.51 m - 2.50 m. [0.47]; Public Water - 200mm Diameter Depth: 0.00m -1.50m [23.74]; Labor [100 h]; Public Water - 200mm Diameter Depth: 1.51m - 2.50m [10.63]; Public Water - 110mm Diameter Depth exceeds 2.50m; Public Water - 160mm Diameter Depth: 1.51m - 2.50m; Public Water - Gate valves, on pipe with diameter 110 mm; Public Water - Gate valves, on pipe with diameter 160 mm; Public Water - Gate valves, on pipe with diameter 200 mm; Public Water - 160mm Diameter Depth: 0.00 m - 1.50 m.; Public Water - 160mm Diameter Depth exceeds 2.50m; Public Water - 200mm Diameter Depth exceeds 2.50m; Public Water - 400mm Diameter Depth: 0.00m -1.50m; Public Water - 400mm Diameter Depth: 1.51m - 2.50m; Public Water - 400mm Diameter Depth exceeds 2.50m | 9,462 | 9,462 | A9770 | 1 | L01 -01 |
| CON-LEG101-LR-10740 |  | Backfilling to Subgrade Elevation [Local – 01 Segment-01] | 10d | 2026-02-08 A | 2026-02-23 A | CON-LEG101-LR-10640, CON-LEG101-EN-3440 | 100% |  | 2026-06-02 | 2026-06-14 |  |  | Public Water - 110mm Diameter Depth: 0.00 m - 1.50 m. [1.44]; Public Water - 110mm Diameter Depth: 1.51 m - 2.50 m. [0.94]; Public Water - 200mm Diameter Depth: 0.00m -1.50m [47.49]; Excavator [48 h]; Water Tanker [48 h]; Road Roller [48 h]; Bucket [100 h]; Compactor [100 h]; Labor [100 h]; Driver [100 h]; Eq. Operator [200 h]; Public Water - 200mm Diameter Depth: 1.51m - 2.50m [21.25]; Public Water - 110mm Diameter Depth exceeds 2.50m; Public Water - 160mm Diameter Depth: 1.51m - 2.50m; Public Water - Gate valves, on pipe with diameter 110 mm; Public Water - Gate valves, on pipe with diameter 160 mm; Public Water - Gate valves, on pipe with diameter 200 mm; Public Water - 160mm Diameter Depth: 0.00 m - 1.50 m.; Public Water - 160mm Diameter Depth exceeds 2.50m; Public Water - 200mm Diameter Depth exceeds 2.50m; Public Water - 400mm Diameter Depth: 0.00m -1.50m; Public Water - 400mm Diameter Depth: 1.51m - 2.50m; Public Water - 400mm Diameter Depth exceeds 2.50m | 18,923.1 | 18,923.1 | A9890 | 1 | L01 -01 |
| CON-LEG101-LR-10440 |  | Concrete encasement, pipe dia 110 mm [Local – 01 Segment-01] | 3d | 2026-02-28 A | 2026-03-01 A | CON-LEG101-LR-10340, CON-LEG101-EN-3450, CON-LEG101-PR-1430 | 100% |  | 2026-05-12 | 2026-05-16 |  |  | Labor [200 h]; Carpenter [50 h]; Mason [100 h] |  |  | A9540 | 1 | L01 -01 |
| CON-LEG101-LR-10340 |  | Testing for Public Water Utility Distribution Piping [Local – 01 Segment-01] | 10d | 2026-03-11 A | 2026-03-24 A | CON-LEG101-LR-10240 | 100% |  | 2026-04-30 | 2026-05-12 |  |  | Public Water - 110mm Diameter Depth: 0.00 m - 1.50 m. [1.44]; Public Water - 110mm Diameter Depth: 1.51 m - 2.50 m. [0.94]; Public Water - 200mm Diameter Depth: 0.00m -1.50m [47.49]; Labor [200 h]; Skilled Labor [100 h]; Pipe Fitter [100 h]; Public Water - 200mm Diameter Depth: 1.51m - 2.50m [21.25]; Public Water - 110mm Diameter Depth exceeds 2.50m; Public Water - 160mm Diameter Depth: 1.51m - 2.50m; Public Water - Gate valves, on pipe with diameter 110 mm; Public Water - Gate valves, on pipe with diameter 160 mm; Public Water - Gate valves, on pipe with diameter 200 mm; Public Water - 160mm Diameter Depth: 0.00 m - 1.50 m.; Public Water - 160mm Diameter Depth exceeds 2.50m; Public Water - 200mm Diameter Depth exceeds 2.50m; Public Water - 400mm Diameter Depth: 0.00m -1.50m; Public Water - 400mm Diameter Depth: 1.51m - 2.50m; Public Water - 400mm Diameter Depth exceeds 2.50m | 18,923.1 | 18,923.1 | A9390 | 1 | L01 -01 |
|  | 1 | **Valves/Chamber** |  | 2026-02-28 | 2026-09-05 |  |  |  |  |  |  |  |  |  |  |  |  |  |
| CON-LEG101-LR-1000 |  | Installation of Gate (Sluice) valves (Direct buried) [Local – 01 Segment-01] | 10d | 2026-02-28 A | 2026-08-05 A | CON-LEG101-PR-1960 SS, CON-LEG101-LR-10240, CON-LEG101-PR-1960, CON-LEG101-LR-10740 | 100% |  | 2026-05-10 | 2026-05-21 |  |  | Public Water - Gate valves, on pipe with diameter 110 mm [6.03]; Public Water - Gate valves, on pipe with diameter 200 mm [0.67]; Excavator [48 h]; Labor [200 h]; Skilled Labor [50 h]; Eq. Operator [50 h]; Pipe Fitter [50 h] | 23,450 | 23,450 | A10090 | 1 | L01 -01 |
| CON-LEG101-LR-1110 |  | Installation of Wash-out Valves [Local – 01 Segment-01] | 7d | 2026-02-28 A | 2026-07-02 A | CON-LEG101-LR-1210, CON-LEG101-LR-1000, CON-LEG101-PR-1960 | 100% |  | 2026-06-16 | 2026-06-24 |  |  | Public Water - Wash out valve, on pipes with diameter 110-400 mm [1.34]; Excavator [48 h]; Labor [200 h]; Skilled Labor [50 h]; Eq. Operator [50 h]; Pipe Fitter [50 h] | 16,080 | 16,080 | A10280 | 1 | L01 -01 |
| CON-LEG101-LR-1150 |  | Installation of Air Valves [Local – 01 Segment-01] | 7d | 2026-02-28 A | 2026-07-02 A | CON-LEG101-LR-1250, CON-LEG101-LR-1110, CON-LEG101-PR-1960 | 100% |  | 2026-07-09 | 2026-07-18 |  |  | Public Water - Air valve complete with gate valves, on pipes with diameter less than 315 mm. [0.67]; Excavator [48 h]; Labor [300 h]; Skilled Labor [50 h]; Eq. Operator [50 h]; Pipe Fitter [50 h] | 6,030 | 6,030 | A10370 | 1 | L01 -01 |
| CON-LEG101-LR-1250 |  | Installation of Air Valve chambers [Local – 01 Segment-01] | 20d | 2026-02-28 A | 2026-09-05 A | CON-LEG101-LR-10240, CON-LEG101-LR-1210, CON-LEG101-PR-1960 | 100% |  | 2026-06-16 | 2026-07-09 |  |  | Public Water - Air valve chamber; on less than 315 mm diameter pipeline [0.67]; Excavator [48 h]; Labor [200 h]; Skilled Labor [50 h]; Eq. Operator [50 h]; Pipe Fitter [50 h] | 26,800 | 26,800 | A10610 | 1 | L01 -01 |
| CON-LEG101-LR-1210 |  | Installation of Wash out chambers [Local – 01 Segment-01] | 20d | 2026-04-21 A | 2026-09-03 A | CON-LEG101-LR-10240, CON-LEG101-PR-1960 SF, CON-LEG101-LR-10240 FF, CON-LEG101-PR-1960, CON-LEG101-LR-2610 | 100% |  | 2026-06-20 | 2026-07-13 |  |  | Public Water - Wash out valve chamber; on 110-400 mm diameter pipeline [1.34]; Excavator [48 h]; Labor [190 h]; Skilled Labor [50 h]; Eq. Operator [50 h]; Pipe Fitter [50 h] | 53,600 | 53,600 | A10520 | 1 | L01 -01 |
|  | 1 | **Electrical Works** |  | 2026-04-02 | 2027-07-06 |  |  |  |  |  |  |  |  |  |  |  |  |  |
|  | 3 | **Low Voltage** |  | 2026-04-02 | 2027-07-06 |  |  |  |  |  |  |  |  |  |  |  |  |  |
| CON-LEG101-LR-7980 |  | Installation of Low Voltage Cables Duct Banks [Local – 01 Segment-01] | 12d | 2026-04-02 A | 2026-04-30 A | CON-LEG101-LR-7780, CON-LEG101-PR-1320 | 100% |  | 2026-12-30 | 2027-01-12 |  |  | Truck [100 h]; Bucket [48 h]; Compactor [48 h]; Labor [50 h]; Driver [50 h]; Eq. Operator [100 h]; Carpenter [50 h]; Steel Fixer [50 h]; Mason [50 h]; Electrician [50 h]; Duct bank for (3) cables [5.03]; Duct bank for (1) cables [32.66]; Duct bank for (2) cables [12.56] | 16,961.5 | 16,961.5 | A5390 | 1 | L01 -01 |
| CON-LEG101-LR-7780 |  | Excavation works for Low Voltage Cables [Local – 01 Segment-01] | 17d | 2026-06-01 A | 2026-10-27 A | CON-LEG101-LR-4200, CON-LEG101-LR-10910, CON-LEG101-LR-3500, CON-LEG101-LR-3410, CON-LEG101-LR-10740, CON-LEG101-LR-2070, CON-LEG101-LR-6880, CON-LEG101-EN-1680, CON-LEG101-EN-3440, CON-LEG101-MS-1120 | 100% |  | 2027-01-31 | 2027-02-24 |  |  | Excavator [144 h]; Truck [300 h]; Labor [600 h]; Driver [350 h]; Eq. Operator [250 h] |  |  | A5110 | 0.7 | L01 -01 |
| CON-LEG101-LR-7880 |  | Installation of Low Voltage Cables [Local – 01 Segment-01] | 21d | 2026-06-04 A | 2026-10-29 A | CON-LEG101-LR-7980, CON-LEG101-LR-7780, CON-LEG101-PR-1900 | 100% |  | 2027-02-21 | 2027-03-18 |  |  | Excavator [144 h]; Truck [268.57 h]; Bucket [144 h]; Compactor [144 h]; Labor [300 h]; Skilled Labor [150 h]; Driver [150 h]; Eq. Operator [450 h]; Electrician [300 h]; Stranded armored Cables, Copper, 4C,50mm² XLPE /SWA/PVC [2.01]; Stranded armored Cables, Copper, 4C,35mm² XLPE/SWA /PVC [261.3]; Stranded armored Cables, Copper, 4xC16mm² XLPE /SWA/PVC [1708.5]; Single Core Cable, Copper 1C,16mm² CU/PVC For Earth [261.3]; Single Core Cable, Copper 1C,10mm² CU/PVC For Earth [1708.5]; Single Core Cable, Copper 1C,25mm² CU/PVC For Earth [2] | 155,593.5 | 155,593.5 | A5220 | 0.7 | L01 -01 |
| CON-LEG101-LR-8760 |  | Installation of Earthing System [Local – 01 Segment-01] | 7d | 2026-07-05 A | 2027-07-06 | CON-LEG101-PR-1320, CON-LEG101-PR-1930, CON-LEG101-LR-7980, CON-LEG101-PR-2550, CON-LEG101-LR-7880, CON-LEG101-PR-1480, CON-LEG101-PR-1310 | 70% | 2.1d | 2027-04-28 | 2027-05-06 | 41.5d | 87.9d | Earthing for Industrial switch poles and GSM towers [1.34]; Crane [48 h]; Labor [100 h]; Eq. Operator [50 h]; Electrician [100 h] | 2,010 | 1,407 | A6630 | 0.7 | L01 -01 |

| ID | WBS | Activity | Duration | Start | Finish | Predecessors | Complete | Remaining | Planned start | Planned finish | Total float | Free float | Resources | Cost | Actual cost | Mapping Sheet Activity ID | % A | JEDDAH 1 - Area Name |
| --- | --- | --- | --- | --- | --- | --- | --- | --- | --- | --- | --- | --- | --- | --- | --- | --- | --- | --- |
|  | 10 | **Telecommunications** |  | 2026-04-02 | 2027-07-27 |  |  |  |  |  |  |  |  |  |  |  |  |  |
| CON-LEG101-LR-8830 |  | Installation of Sand and soil encased duct banks for primary network [Local – 01 Segment-01] | 20d | 2026-04-02 A | 2026-04-30 A | CON-LEG101-LR-7780, CON-LEG101-EN-3280, CON-LEG101-EN-3440 | 100% |  | 2026-12-30 | 2027-01-21 |  |  | Truck [144 h]; Bucket [144 h]; Compactor [144 h]; Labor [150 h]; Driver [150 h]; Eq. Operator [300 h]; Carpenter [150 h]; Steel Fixer [150 h]; Mason [150 h]; Electrician [150 h]; 6-ways ducts, 50mm diameter, (HDPE TYPE) . [555.36]; 6-ways ducts, 50mm diameter, (HDPE TYPE) + 2 x 32 mm HDPE sub-ducts [259.39] | 121,846.7 | 121,846.7 | A6770 | 1 | L01 -01 |
| CON-LEG101-LR-9330 |  | Installation of Reinforced concrete manhole [Local – 01 Segment-01] | 21d | 2026-04-04 A | 2027-07-27 | CON-LEG101-LR-9230, CON-LEG101-PR-3260 | 90% | 2.1d | 2027-04-22 | 2027-05-22 | 22.7d | 69.1d | Truck [48 h]; Bucket [48 h]; Compactor [48 h]; Labor [50 h]; Driver [50 h]; Eq. Operator [100 h]; Carpenter [50 h]; Steel Fixer [50 h]; Mason [50 h]; Electrician [50 h]; Reinforced concrete manhole Type 1- 1200x1500x1200mm [2.01]; Reinforced concrete manhole Type 2- 1200x1500x1200mm [6.7] | 148,070 | 133,263 | A7520 | 0.9 | L01 -01 |
| CON-LEG101-LR-8930 |  | Installation of Concrete encased duct banks for primary network [Local – 01 Segment-01] | 11d | 2026-04-07 A | 2026-04-26 A | CON-LEG101-PR-3180, CON-LEG101-PR-4020, CON-LEG101-LR-8830, CON-LEG101-PR-1430, CON-LEG101-MS-1130, CON-LEG101-LR-7880 | 100% |  | 2027-02-18 | 2027-03-04 |  |  | Truck [134.91 h]; Bucket [48 h]; Compactor [48 h]; Labor [50 h]; Driver [50 h]; Eq. Operator [100 h]; Carpenter [86.36 h]; Steel Fixer [50 h]; Mason [50 h]; Electrician [50 h]; 6-ways ducts, 50mm diameter, (HDPE TYPE) + 4 x 32 mm HDPE sub-ducts [218.89]; 6-ways ducts, 50mm diameter, (HDPE TYPE) . [85.53] | 55,411.75 | 55,411.75 | A6910 | 1 | L01 -01 |
| CON-LEG101-LR-9030 |  | Installation of Sand encased duct banks for secondary network [Local – 01 Segment-01] | 14d | 2026-07-08 A | 2027-07-10 | CON-LEG101-LR-8930, CON-LEG101-EN-3440, CON-LEG101-LR-7880 | 60% | 5.6d | 2027-04-03 | 2027-04-19 | 22.7d | 0d | Truck [48 h]; Bucket [48 h]; Compactor [48 h]; Labor [50 h]; Driver [50 h]; Eq. Operator [100 h]; Carpenter [50 h]; Steel Fixer [50 h]; Mason [50 h]; Electrician [50 h]; 2 x 32 mm HDPE sub-ducts [87.23]; 6-ways ducts, 50mm diameter, (HDPE TYPE) + 6 x 32 mm HDPE sub-ducts [86.23] | 25,969 | 15,581.4 | A7070 | 0.55 | L01 -01 |
| CON-LEG101-LR-9130 |  | Installation of Sand and soil encased duct banks, for combined network of primary and secondary [Local – 01 Segment-01 | 18d | 2026-07-08 A | 2027-07-18 | CON-LEG101-LR-9030, CON-LEG101-EN-3440 | 60% | 7.2d | 2027-04-19 | 2027-05-10 | 22.7d | 0d | Truck [192 h]; Bucket [192 h]; Compactor [192 h]; Labor [200 h]; Driver [200 h]; Eq. Operator [400 h]; Carpenter [200 h]; Steel Fixer [200 h]; Mason [200 h]; Electrician [200 h]; 4 x 32 mm HDPE sub-ducts [17.29]; 6-ways ducts, 50mm diameter, (HDPE TYPE) + 2 x 32 mm HDPE sub-ducts [6.13] | 6,216.5 | 3,729.9 | A7230 | 0.55 | L01 -01 |
| CON-LEG101-LR-9230 |  | Installation of Concrete encased duct banks for for combined network of primary and secondary [Local – 01 Segment-01] | 15d | 2026-07-08 A | 2027-07-25 | CON-LEG101-PR-3250, CON-LEG101-LR-9130, CON-LEG101-PR-1430 | 60% | 6d | 2027-05-10 | 2027-06-01 | 22.7d | 0d | Truck [48 h]; Bucket [48 h]; Compactor [48 h]; Labor [50 h]; Driver [50 h]; Eq. Operator [100 h]; Carpenter [50 h]; Steel Fixer [50 h]; Mason [50 h]; Electrician [50 h]; 6 x 32 mm HDPE sub-ducts [4.72] | 1,888 | 1,132.8 | A7370 | 0.55 | L01 -01 |
|  | 11 | **CCTV feeding system and GSM** |  | 2026-04-13 | 2027-07-10 |  |  |  |  |  |  |  |  |  |  |  |  |  |
| CON-LEG101-LR-8550 |  | Excavation works for Low Voltage Cables for CCTV feeding system and GSM [Local – 01 Segment-01] | 6d | 2026-04-13 A | 2026-10-15 A | CON-LEG101-LR-8830, CON-LEG101-EN-3290, CON-LEG101-EN-3440 | 100% |  | 2027-01-26 | 2027-02-01 |  |  | Excavator [48 h]; Truck [48 h]; Labor [200 h]; Driver [50 h]; Eq. Operator [125 h]; Duct bank for (1) cables [16.75] | 4,020 | 4,020 | A6330 | 0.9 | L01 -01 |
| CON-LEG101-LR-9870 |  | Installation of 35 Meters mono pole with Double Platform for Access Points [Local – 01 Segment-01] | 2d | 2026-05-16 A | 2026-07-08 A | CON-LEG101-LR-9850, CON-LEG101-PR-3830 | 100% |  | 2027-04-20 | 2027-04-21 |  |  | Truck [48 h]; Bucket [48 h]; Compactor [48 h]; Labor [50 h]; Driver [50 h]; Eq. Operator [100 h]; Carpenter [50 h]; Steel Fixer [50 h]; Mason [50 h]; Electrician [50 h]; "35 Meters mono pole with Double Platform for Access Points including : [0.67] | 107,200 | 107,200 | A8580 | 1 | L01 -01 |
| CON-LEG101-LR-9880 |  | Installation of 25 Meters pole for CCTV Cameras [Local – 01 Segment-01] | 2d | 2026-05-16 A | 2026-07-12 A | CON-LEG101-LR-9870 SS, CON-LEG101-PR-3870 | 100% |  | 2027-04-20 | 2027-04-21 |  |  | Truck [48 h]; Bucket [48 h]; Compactor [48 h]; Labor [50 h]; Driver [50 h]; Eq. Operator [100 h]; Carpenter [50 h]; Steel Fixer [50 h]; Mason [50 h]; Electrician [50 h]; "25 Meters pole for CCTV Cameras including : [1.34] | 174,200 | 174,200 | A8620 | 1 | L01 -01 |
| CON-LEG101-LR-9430 |  | Installation of Fiber Optic Patch Panel 12 port [Local – 01 Segment-01] | 7d | 2026-07-01 A | 2026-10-15 A | CON-LEG101-LR-8620, CON-LEG101-PR-3360 | 100% |  | 2027-04-12 | 2027-04-20 |  |  | Truck [48 h]; Bucket [48 h]; Compactor [48 h]; Labor [50 h]; Driver [50 h]; Eq. Operator [100 h]; Carpenter [50 h]; Steel Fixer [50 h]; Mason [50 h]; Electrician [50 h]; Fiber Optic Patch Panel 12 port [0.67] | 6,700 | 6,700 | A7680 | 0.9 | L01 -01 |
| CON-LEG101-LR-9450 |  | Installation of Modular Industrial Switches for main pole [Local – 01 Segment-01] | 7d | 2026-07-01 A | 2026-10-15 A | CON-LEG101-LR-9430, CON-LEG101-PR-3370 | 100% |  | 2027-04-06 | 2027-04-14 |  |  | Truck [48 h]; Bucket [48 h]; Compactor [48 h]; Labor [50 h]; Driver [50 h]; Eq. Operator [100 h]; Carpenter [50 h]; Steel Fixer [50 h]; Mason [50 h]; Electrician [50 h]; Modular Industrial Switches for main pole [0.67] | 10,050 | 10,050 | A7740 | 0.9 | L01 -01 |
| CON-LEG101-LR-9460 |  | Installation of 8POE ports Industrial Switches for remote poles [Local – 01 Segment-01] | 7d | 2026-07-01 A | 2026-10-15 A | CON-LEG101-LR-9450, CON-LEG101-PR-3410 | 100% |  | 2027-04-26 | 2027-05-04 |  |  | Truck [48 h]; Bucket [48 h]; Compactor [48 h]; Labor [50 h]; Driver [50 h]; Eq. Operator [100 h]; Carpenter [50 h]; Steel Fixer [50 h]; Mason [50 h]; Electrician [50 h]; 8POE ports Industrial Switches for remote poles [2.01] | 20,100 | 20,100 | A7780 | 0.9 | L01 -01 |
| CON-LEG101-LR-9520 |  | Installation of Core Switch [Local – 01 Segment-01] | 3d | 2026-07-01 A | 2026-10-15 A | CON-LEG101-LR-9460, CON-LEG101-PR-3450 | 100% |  | 2027-05-04 | 2027-05-08 |  |  | Truck [48 h]; Bucket [48 h]; Compactor [48 h]; Labor [50 h]; Driver [50 h]; Eq. Operator [100 h]; Carpenter [50 h]; Steel Fixer [50 h]; Mason [50 h]; Electrician [50 h]; CORE SWITCH [0.67] | 20,100 | 20,100 | A7880 | 0.9 | L01 -01 |
| CON-LEG101-LR-9540 |  | Installation of Access Switch 48 port [Local – 01 Segment-01] | 3d | 2026-07-01 A | 2026-10-15 A | CON-LEG101-LR-9520, CON-LEG101-PR-3490 | 100% |  | 2027-05-08 | 2027-05-11 |  |  | Truck [48 h]; Bucket [48 h]; Compactor [48 h]; Labor [50 h]; Driver [50 h]; Eq. Operator [100 h]; Carpenter [50 h]; Steel Fixer [50 h]; Mason [50 h]; Electrician [50 h]; Access Switch 48 port [0.67] | 10,050 | 10,050 | A7930 | 0.9 | L01 -01 |
| CON-LEG101-LR-9560 |  | Installation of Server [Local – 01 Segment-01] | 3d | 2026-07-01 A | 2026-10-15 A | CON-LEG101-LR-9540, CON-LEG101-PR-3530 | 100% |  | 2027-05-11 | 2027-05-19 |  |  | Truck [48 h]; Bucket [48 h]; Compactor [48 h]; Labor [50 h]; Driver [50 h]; Eq. Operator [100 h]; Carpenter [50 h]; Steel Fixer [50 h]; Mason [50 h]; Electrician [50 h]; SERVER [1.34] | 87,100 | 87,100 | A7980 | 0.9 | L01 -01 |
| CON-LEG101-LR-9590 |  | Installation of Stand rack 42U- 19" [Local – 01 Segment-01] | 3d | 2026-07-01 A | 2026-10-15 A | CON-LEG101-LR-9560, CON-LEG101-PR-3570 | 100% |  | 2027-05-19 | 2027-05-23 |  |  | Truck [48 h]; Bucket [48 h]; Compactor [48 h]; Labor [50 h]; Driver [50 h]; Eq. Operator [100 h]; Carpenter [50 h]; Steel Fixer [50 h]; Mason [50 h]; Electrician [50 h]; Stand rack 42U- 19" completed with ,ventilation fans, earthling connections, labeling and should be equipped with an extra capacity of 20% for future increase. [0.67] | 10,050 | 10,050 | A8040 | 0.9 | L01 -01 |
| CON-LEG101-LR-9610 |  | Installation of IP Outdoor CCTV POE Camera,5 MP, Metal Housing [Local – 01 Segment-01] | 3d | 2026-07-01 A | 2026-10-15 A | CON-LEG101-LR-9590, CON-LEG101-PR-3610 | 100% |  | 2027-05-23 | 2027-05-26 |  |  | Truck [48 h]; Bucket [48 h]; Compactor [48 h]; Labor [50 h]; Driver [50 h]; Eq. Operator [100 h]; Carpenter [50 h]; Steel Fixer [50 h]; Mason [50 h]; Electrician [50 h]; IP Outdoor CCTV POE Camera,5 MP, Metal Housing [2.68] | 13,400 | 13,400 | A8090 | 0.9 | L01 -01 |
| CON-LEG101-LR-9690 |  | Installation of Outdoor PTZ IP66 [Local – 01 Segment-01] | 2d | 2026-07-01 A | 2026-10-15 A | CON-LEG101-LR-9610, CON-LEG101-PR-3650 | 100% |  | 2027-05-26 | 2027-05-29 |  |  | Truck [48 h]; Bucket [48 h]; Compactor [48 h]; Labor [50 h]; Driver [50 h]; Eq. Operator [100 h]; Carpenter [50 h]; Steel Fixer [50 h]; Mason [50 h]; Electrician [50 h]; "Outdoor PTZ with IR, HDTV 1080 and 31x optical, 12x digital, total 372x zoom, H264/265 with Motion JPEG. |  |  | A8200 | 0.9 | L01 -01 |
| CON-LEG101-LR-9850 |  | Installation of Horizontal Power Distribution Unit (min 8 outlets) [Local – 01 Segment-01] | 2d | 2026-07-01 A | 2026-10-15 A | CON-LEG101-LR-9840, CON-LEG101-PR-3730 | 100% |  | 2027-06-05 | 2027-06-07 |  |  | Truck [48 h]; Bucket [48 h]; Compactor [48 h]; Labor [50 h]; Driver [50 h]; Eq. Operator [100 h]; Carpenter [50 h]; Steel Fixer [50 h]; Mason [50 h]; Electrician [50 h]; Horizontal Power Distribution Unit (min 8 outlets) [0.67] | 6,700 | 6,700 | A8530 | 0.9 | L01 -01 |
| CON-LEG101-LR-9940 |  | Installation of Short Range wireless point to point wireless bridge [Local – 01 Segment-01] | 2d | 2026-07-01 A | 2026-10-15 A | CON-LEG101-LR-9880 SS, CON-LEG101-PR-3910 | 100% |  | 2027-06-07 | 2027-06-09 |  |  | Truck [48 h]; Bucket [48 h]; Compactor [48 h]; Labor [50 h]; Driver [50 h]; Eq. Operator [100 h]; Carpenter [50 h]; Steel Fixer [50 h]; Mason [50 h]; Electrician [50 h]; Short Range wireless point to point wireless bridge [1.34] | 17,420 | 17,420 | A8710 | 0.9 | L01 -01 |
| CON-LEG101-LR-8620 |  | Installation of Low Voltage Cables for CCTV feeding system and GSM [Local – 01 Segment-01] | 4d | 2026-08-29 A | 2026-10-15 A | CON-LEG101-LR-8550, CON-LEG101-PR-1900 | 100% |  | 2027-05-04 | 2027-05-09 |  |  | Excavator [48 h]; Truck [48 h]; Bucket [48 h]; Compactor [48 h]; Labor [100 h]; Skilled Labor [50 h]; Driver [50 h]; Eq. Operator [150 h]; Electrician [100 h]; Stranded Copper wire, , 3xC,2 mm² XLPE/PVC [11.73]; Stranded armored Cables, Copper, 4C,35mm² XLPE/SWA /PVC [41.54]; Stranded armored Cables, Copper, 4xC16mm² XLPE /SWA/PVC [157.45]; Single Core Cable, Copper 1C,16mm² CU/PVC For Earth [41.54]; Single Core Cable, Copper 1C,10mm² CU/PVC For Earth [157.45] | 18,626.25 | 18,626.25 | A6410 | 0.6 | L01 -01 |
| CON-LEG101-LR-9780 |  | Installation of Security workstation with 1 x 19" LED screen [Local – 01 Segment-01] | 1d | 2027-07-04 | 2027-07-04 | CON-LEG101-LR-9690, CON-LEG101-PR-3690 |  |  |  |  | 35.6d | 0d | Truck [48 h]; Bucket [48 h]; Compactor [48 h]; Labor [50 h]; Driver [50 h]; Eq. Operator [100 h]; Carpenter [50 h]; Steel Fixer [50 h]; Mason [50 h]; Electrician [50 h]; Security workstation with 1 x 19" LED screen including graphic video cards, software, license and interfaces required for the system [0.67] | 16,750 |  | A8320 |  | L01 -01 |
| CON-LEG101-LR-9790 |  | Installation of LED Screen 43" (24/7 operation) with Ethernet decoders [Local – 01 Segment-01] | 2d | 2027-07-05 | 2027-07-06 | CON-LEG101-PR-3950, CON-LEG101-LR-9780, CON-LEG101-PR-3290 |  |  |  |  | 35.6d | 0d | Truck [48 h]; Bucket [48 h]; Compactor [48 h]; Labor [50 h]; Driver [50 h]; Eq. Operator [100 h]; Carpenter [50 h]; Steel Fixer [50 h]; Mason [50 h]; Electrician [50 h]; LED Screen 43" (24/7 operation) with Ethernet decoders |  |  | A8360 |  | L01 -01 |
| CON-LEG101-LR-9830 |  | Installation of Network Video Recorder 4k 64 Channel [Local – 01 Segment-01] | 1d | 2027-07-07 | 2027-07-07 | CON-LEG101-PR-3960, CON-LEG101-LR-9790, CON-LEG101-PR-3760 |  |  |  |  | 35.6d | 0d | Truck [48 h]; Bucket [48 h]; Compactor [48 h]; Labor [50 h]; Driver [50 h]; Eq. Operator [100 h]; Carpenter [50 h]; Steel Fixer [50 h]; Mason [50 h]; Electrician [50 h]; Network Video Recorder 4k 64 Channel, Up to 12 MP high-definition live view, storage and playback, 2 HDMI (different source) and 2 VGA (different source) interfaces (Min). [0.67] | 33,500 |  | A8450 |  | L01 -01 |
| CON-LEG101-LR-9840 |  | Installation of Keypad [Local – 01 Segment-01] | 2d | 2027-07-08 | 2027-07-10 | CON-LEG101-PR-3970, CON-LEG101-LR-9830, CON-LEG101-PR-3790 |  |  |  |  | 35.6d | 0d | Truck [48 h]; Bucket [48 h]; Compactor [48 h]; Labor [50 h]; Driver [50 h]; Eq. Operator [100 h]; Carpenter [50 h]; Steel Fixer [50 h]; Mason [50 h]; Electrician [50 h]; Keypad [0.67] | 67,000 |  | A8490 |  | L01 -01 |

| ID | WBS | Activity | Duration | Start | Finish | Predecessors | Complete | Remaining | Planned start | Planned finish | Total float | Free float | Resources | Cost | Actual cost | Mapping Sheet Activity ID | JEDDAH 1 - Area Name | % A |
| --- | --- | --- | --- | --- | --- | --- | --- | --- | --- | --- | --- | --- | --- | --- | --- | --- | --- | --- |
|  | 12 | **Earthing System** |  | 2027-07-11 | 2027-07-12 |  |  |  |  |  |  |  |  |  |  |  |  |  |
| CON-LEG101-LR-8280 |  | Installation of Earthing for Distribution panels,SL feeder pillars, KWH, Unit substations and RMU [Local – 01 Segment-01 | 2d | 2027-07-11 | 2027-07-12 | CON-LEG101-PR-1480, CON-LEG101-LR-9940 SS, CON-LEG101-PR-1310 |  |  |  |  | 35.6d | 82d | Earthing for Distribution panels,SL feeder pillars, KWH, Unit substations and RMU; Crane [48 h]; Labor [100 h]; Eq. Operator [50 h]; Electrician [100 h] |  |  | A5810 | L01 -01 |  |
|  | 9 | **Road Lighting** |  | 2026-03-14 | 2027-07-31 |  |  |  |  |  |  |  |  |  |  |  |  |  |
| CON-LEG101-LR-8080 |  | Installation of Lighting poles [Local – 01 Segment-01] | 17d | 2026-03-14 A | 2026-10-22 A | CON-LEG101-PR-1950, CON-LEG101-LR-10740, CON-LEG101-LR-2070, CON-LEG101-LR-3410, CON-LEG101-LR-4200, CON-LEG101-PR-1910 | 100% |  | 2026-12-15 | 2027-01-03 |  |  | Lighting poles with 1 arm, height of (8 ) meters, including the power distribution box, cables, and RCC foundation. [34.84]; Excavator [48 h]; Truck [100 h]; Crane [48 h]; Labor [150 h]; Driver [50 h]; Eq. Operator [100 h]; Carpenter [100 h]; Steel Fixer [50 h]; Mason [50 h]; Electrician [150 h] | 118,456 | 118,456 | A5530 | L01 -01 | 0.75 |
| CON-LEG101-LR-8180 |  | Installation of Street Lighting Luminaire [Local – 01 Segment-01] | 12d | 2026-05-16 A | 2026-10-22 A | CON-LEG101-LR-8080, CON-LEG101-PR-1920 | 100% |  | 2027-02-04 | 2027-02-24 |  |  | Street Lighting( LED) Luminous efficacy ? 120Lum/w complete with control gear and lamp, (100) WATT. Max. [34.84]; Crane [48 h]; Labor [150 h]; Skilled Labor [100 h]; Eq. Operator [150 h]; Electrician [150 h] | 34,840 | 34,840 | A5670 | L01 -01 | 0.75 |
| CON-LEG101-LR-7420 |  | Installation of Unit Substation Including concrete foundations and fencing [Local – 01 Segment-01] | 7d | 2026-07-05 A | 2027-07-10 | CON-LEG101-LR-8080, CON-LEG101-LR-8550, CON-LEG101-EN-3310, CON-LEG101-EN-3320, CON-LEG101-EN-3330, CON-LEG101-EN-3360, CON-LEG101-PR-1890 | 25% | 5.25d | 2027-04-14 | 2027-04-22 | -103.65d | 0d | Unit Substation 13.8/0.4 K V, 500kVA ,Including concrete foundations and fencing, According to the specifications and standards of SEC; Excavator [48 h]; Truck [48 h]; Bucket [48 h]; Compactor [48 h]; Labor [100 h]; Skilled Labor [50 h]; Driver [100 h]; Eq. Operator [150 h]; Electrician [100 h] |  |  | A4560 | L01 -01 | 0.25 |
| CON-LEG101-LR-8430 |  | Installation of Street Lighting feeder pillars / Lighting panels [Local – 01 Segment-01] | 3d | 2026-07-05 A | 2026-10-25 A | CON-LEG101-LR-8080, CON-LEG101-PR-1940, CON-LEG101-PR-2550, CON-LEG101-LR-8180 | 100% |  | 2027-03-27 | 2027-03-30 |  |  | Street Lighting feeder pillars [1.34]; Crane [48 h]; Labor [100 h]; Eq. Operator [100 h]; Carpenter [100 h]; Electrician [200 h] | 46,900 | 46,900 | A6030 | L01 -01 | 0.8 |
| CON-LEG101-LR-8330 |  | Installation of Earthing for Streetlighting feeders for every end pole circuits. [Local – 01 Segment-01] | 6d | 2026-08-01 A | 2027-07-31 | CON-LEG101-LR-7500, CON-LEG101-LR-7420, CON-LEG101-LR-8430, CON-LEG101-PR-1480, CON-LEG101-LR-8180, CON-LEG101-PR-1310 | 40% | 3.6d | 2027-06-01 | 2027-06-08 | -103.65d | 0d | Earthing for Streetlighting feeders for every end pole circuits.; Crane [48 h]; Labor [100 h]; Eq. Operator [50 h]; Carpenter [100 h]; Electrician [200 h] |  |  | A5890 | L01 -01 | 0.4 |
| CON-LEG101-LR-7500 |  | Installation of Ring Main Unit RMU [Local – 01 Segment-01] | 15d | 2027-07-10 | 2027-07-27 | CON-LEG101-LR-8080, CON-LEG101-LR-7420, CON-LEG101-PR-2510 |  |  |  |  | -103.65d | 0d | Ring Main Unit RMU, 13.8KV, According to the specifications and standards of SEC; Excavator [48 h]; Truck [48 h]; Bucket [48 h]; Compactor [48 h]; Labor [100 h]; Skilled Labor [50 h]; Driver [100 h]; Eq. Operator [150 h]; Electrician [100 h] |  |  | A4670 | L01 -01 |  |
|  | 2 | **LOCAL - 01 Segment-02 (From 1+066 to 2+133)** |  | 2026-01-22 | 2027-08-05 |  |  |  |  |  |  |  |  |  |  |  |  |  |
|  | 5 | **TSE Network** |  | 2026-01-22 | 2026-09-06 |  |  |  |  |  |  |  |  |  |  |  |  |  |
|  | 2 | **Pipe Work** |  | 2026-01-22 | 2026-06-02 |  |  |  |  |  |  |  |  |  |  |  |  |  |
| CON-LEG101-LR-1310 |  | Excavation for TSE Network [Local – 01 Segment-02] | 10d | 2026-01-22 A | 2026-01-31 A | CON-LEG101-LR-3420, CON-LEG101-LR-4210, CON-LEG101-LR-10960, CON-LEG101-EN-1720, CON-LEG101-EN-1730, CON-LEG101-EN-1740, CON-LEG101-EN-1810 | 100% |  | 2026-07-09 | 2026-07-21 |  |  | Excavator [48 h]; Water Tanker [48 h]; Truck [96 h]; Crane [48 h]; Labor [200 h]; Driver [150 h]; Eq. Operator [100 h]; Piping TSE Network - 110mm Diameter Depth: 0.00 m - 1.50 m. [6.9]; Piping TSE Network - 110mm Diameter Depth: 1.51m - 2.50m [10.14]; Piping TSE Network - 160mm Diameter Depth: 0.00 m - 1.50 m. [7.3]; Piping TSE Network - 160mm Diameter Depth: 1.51m - 2.50m [21.67]; Piping TSE Network - 200mm Diameter Depth: 0.00 m - 1.50 m. [37.22]; Piping TSE Network - 200mm Diameter Depth: 1.51m - 2.50m [71.83]; Piping TSE Network - 200mm Diameter Depth: 2.51m - 3.50m; Piping TSE Network - 200mm Diameter Depth exceeds 3.50m; Piping TSE Network - 110mm Diameter Depth exceeds 2.50m; Piping TSE Network - 160mm Diameter Depth exceeds 2.50m; Piping TSE Network - 250mm Diameter Depth: 0.00 m - 1.50 m.; Piping TSE Network - 250mm Diameter Depth: 1.51m - 2.50m; Piping TSE Network - 250mm Diameter Depth exceeds 2.50m | 44,723.5 | 44,723.5 | A10950 | L01 -02 | 1 |
| CON-LEG101-LR-1420 |  | Granular bedding for TSE Network [Local – 01 Segment-02] | 7d | 2026-01-26 A | 2026-05-21 A | CON-LEG101-LR-1310 | 100% |  | 2026-07-20 | 2026-07-28 |  |  | Loader [48 h]; Truck [48 h]; Driver [50 h]; Eq. Operator [50 h]; Piping TSE Network - 110mm Diameter Depth: 0.00 m - 1.50 m. [1.73]; Piping TSE Network - 110mm Diameter Depth: 1.51m - 2.50m [2.54]; Piping TSE Network - 160mm Diameter Depth: 0.00 m - 1.50 m. [1.83]; Piping TSE Network - 160mm Diameter Depth: 1.51m - 2.50m [5.41]; Piping TSE Network - 200mm Diameter Depth: 0.00 m - 1.50 m. [9.32]; Piping TSE Network - 200mm Diameter Depth: 1.51m - 2.50m [17.96]; Piping TSE Network - 200mm Diameter Depth: 2.51m - 3.50m; Piping TSE Network - 200mm Diameter Depth exceeds 3.50m; Piping TSE Network - 110mm Diameter Depth exceeds 2.50m; Piping TSE Network - 160mm Diameter Depth exceeds 2.50m; Piping TSE Network - 250mm Diameter Depth: 0.00 m - 1.50 m.; Piping TSE Network - 250mm Diameter Depth: 1.51m - 2.50m; Piping TSE Network - 250mm Diameter Depth exceeds 2.50m | 11,186.4 | 11,186.4 | A11070 | L01 -02 | 1 |
| CON-LEG101-LR-1530 |  | Installation of Pipe for TSE Network [Local – 01 Segment-02] | 20d | 2026-01-27 A | 2026-05-24 A | CON-LEG101-PR-2590, CON-LEG101-LR-1420, CON-LEG101-PR-1690 | 100% |  | 2026-07-28 | 2026-08-20 |  |  | Excavator [48 h]; Crane [48 h]; Labor [150 h]; Skilled Labor [100 h]; Eq. Operator [100 h]; Plumber [50 h]; Pipe Fitter [50 h]; Piping TSE Network - 110mm Diameter Depth: 0.00 m - 1.50 m. [15.53]; Piping TSE Network - 110mm Diameter Depth: 1.51m - 2.50m [22.83]; Piping TSE Network - 160mm Diameter Depth: 0.00 m - 1.50 m. [16.44]; Piping TSE Network - 160mm Diameter Depth: 1.51m - 2.50m [48.72]; Piping TSE Network - 200mm Diameter Depth: 0.00 m - 1.50 m. [83.85]; Piping TSE Network - 200mm Diameter Depth: 1.51m - 2.50m [161.62]; Piping TSE Network - 200mm Diameter Depth: 2.51m - 3.50m; Piping TSE Network - 200mm Diameter Depth exceeds 3.50m; Piping TSE Network - 110mm Diameter Depth exceeds 2.50m; Piping TSE Network - 160mm Diameter Depth exceeds 2.50m; Piping TSE Network - 250mm Diameter Depth: 0.00 m - 1.50 m.; Piping TSE Network - 250mm Diameter Depth: 1.51m - 2.50m; Piping TSE Network - 250mm Diameter Depth exceeds 2.50m | 100,650.9 | 100,650.9 | A11190 | L01 -02 | 1 |
| CON-LEG101-LR-1860 |  | Granular Surround for TSE Network [Local – 01 Segment-02] | 14d | 2026-01-29 A | 2026-05-25 A | CON-LEG101-LR-1760, CON-LEG101-EN-3450 | 100% |  | 2026-08-20 | 2026-09-06 |  |  | Loader [48 h]; Truck [48 h]; Driver [50 h]; Eq. Operator [50 h]; Piping TSE Network - 110mm Diameter Depth: 0.00 m - 1.50 m. [1.73]; Piping TSE Network - 110mm Diameter Depth: 1.51m - 2.50m [2.54]; Piping TSE Network - 160mm Diameter Depth: 0.00 m - 1.50 m. [1.83]; Piping TSE Network - 160mm Diameter Depth: 1.51m - 2.50m [5.41]; Piping TSE Network - 200mm Diameter Depth: 0.00 m - 1.50 m. [9.32]; Piping TSE Network - 200mm Diameter Depth: 1.51m - 2.50m [17.96]; Piping TSE Network - 200mm Diameter Depth: 2.51m - 3.50m; Piping TSE Network - 200mm Diameter Depth exceeds 3.50m; Piping TSE Network - 110mm Diameter Depth exceeds 2.50m; Piping TSE Network - 160mm Diameter Depth exceeds 2.50m; Piping TSE Network - 250mm Diameter Depth: 0.00 m - 1.50 m.; Piping TSE Network - 250mm Diameter Depth: 1.51m - 2.50m; Piping TSE Network - 250mm Diameter Depth exceeds 2.50m | 11,186.4 | 11,186.4 | A11560 | L01 -02 | 1 |
| CON-LEG101-LR-1760 |  | Concrete encasement, pipe dia 110 mm [Local – 01 Segment-02] | 3d | 2026-02-07 A | 2026-05-25 A | CON-LEG101-LR-1650, CON-LEG101-EN-3450, CON-LEG101-PR-1430 | 100% |  | 2026-06-14 | 2026-06-17 |  |  | Labor [200 h]; Carpenter [50 h]; Mason [100 h]; Piping TSE Network - Concrete encasement, pipe dia 110 mm [9.06] | 3,171 | 3,171 | A11460 | L01 -02 | 1 |
| CON-LEG101-LR-1970 |  | Installation of Micron Marker Magnetic Tape [Local – 01 Segment-02] | 6d | 2026-02-25 A | 2026-05-31 A | CON-LEG101-LR-1860 | 100% |  | 2026-06-10 | 2026-06-17 |  |  | Piping TSE Network - 160mm Diameter Depth exceeds 2.50m; Piping TSE Network - 250mm Diameter Depth: 0.00 m - 1.50 m.; Piping TSE Network - 250mm Diameter Depth: 1.51m - 2.50m; Piping TSE Network - 250mm Diameter Depth exceeds 2.50m; Labor [100 h]; Piping TSE Network - 110mm Diameter Depth: 0.00 m - 1.50 m. [1.73]; Piping TSE Network - 110mm Diameter Depth: 1.51m - 2.50m [2.54]; Piping TSE Network - 160mm Diameter Depth: 0.00 m - 1.50 m. [1.83]; Piping TSE Network - 160mm Diameter Depth: 1.51m - 2.50m [5.41]; Piping TSE Network - 200mm Diameter Depth: 0.00 m - 1.50 m. [9.32]; Piping TSE Network - 200mm Diameter Depth: 1.51m - 2.50m [17.96]; Piping TSE Network - 200mm Diameter Depth: 2.51m - 3.50m; Piping TSE Network - 200mm Diameter Depth exceeds 3.50m; Piping TSE Network - 110mm Diameter Depth exceeds 2.50m | 11,186.4 | 11,186.4 | A11680 | L01 -02 | 1 |
| CON-LEG101-LR-2090 |  | Backfilling to Subgrade Elevation [Local – 01 Segment-02] | 14d | 2026-02-26 A | 2026-06-01 A | CON-LEG101-LR-1970, CON-LEG101-EN-3440 | 100% |  | 2026-06-17 | 2026-07-04 |  |  | Piping TSE Network - 200mm Diameter Depth: 2.51m - 3.50m; Piping TSE Network - 200mm Diameter Depth exceeds 3.50m; Piping TSE Network - 110mm Diameter Depth exceeds 2.50m; Piping TSE Network - 160mm Diameter Depth exceeds 2.50m; Piping TSE Network - 250mm Diameter Depth: 0.00 m - 1.50 m.; Piping TSE Network - 250mm Diameter Depth: 1.51m - 2.50m; Piping TSE Network - 250mm Diameter Depth exceeds 2.50m; Excavator [84.57 h]; Water Tanker [84.57 h]; Road Roller [96 h]; Bucket [96 h]; Compactor [96 h]; Labor [200 h]; Driver [100 h]; Eq. Operator [400 h]; Piping TSE Network - 110mm Diameter Depth: 0.00 m - 1.50 m. [3.45]; Piping TSE Network - 110mm Diameter Depth: 1.51m - 2.50m [5.07]; Piping TSE Network - 160mm Diameter Depth: 0.00 m - 1.50 m. [3.65]; Piping TSE Network - 160mm Diameter Depth: 1.51m - 2.50m [10.83]; Piping TSE Network - 200mm Diameter Depth: 0.00 m - 1.50 m. [18.63]; Piping TSE Network - 200mm Diameter Depth: 1.51m - 2.50m [35.91] | 22,363.4 | 22,363.4 | A11800 | L01 -02 | 1 |
| CON-LEG101-LR-1650 |  | Testing for TSE Network [Local – 01 Segment-02] | 14d | 2026-03-10 A | 2026-06-02 A | CON-LEG101-LR-1530 | 100% |  | 2026-05-24 | 2026-06-14 |  |  | Labor [200 h]; Skilled Labor [100 h]; Pipe Fitter [100 h]; Piping TSE Network - 110mm Diameter Depth: 0.00 m - 1.50 m. [3.45]; Piping TSE Network - 110mm Diameter Depth: 1.51m - 2.50m [5.07]; Piping TSE Network - 160mm Diameter Depth: 0.00 m - 1.50 m. [3.65]; Piping TSE Network - 160mm Diameter Depth: 1.51m - 2.50m [10.83]; Piping TSE Network - 200mm Diameter Depth: 0.00 m - 1.50 m. [18.63]; Piping TSE Network - 200mm Diameter Depth: 1.51m - 2.50m [35.91]; Piping TSE Network - 200mm Diameter Depth: 2.51m - 3.50m; Piping TSE Network - 200mm Diameter Depth exceeds 3.50m; Piping TSE Network - 110mm Diameter Depth exceeds 2.50m; Piping TSE Network - 160mm Diameter Depth exceeds 2.50m; Piping TSE Network - 250mm Diameter Depth: 0.00 m - 1.50 m.; Piping TSE Network - 250mm Diameter Depth: 1.51m - 2.50m; Piping TSE Network - 250mm Diameter Depth exceeds 2.50m | 22,363.4 | 22,363.4 | A11310 | L01 -02 | 1 |
|  | 1 | **Valves/Chamber** |  | 2026-03-04 | 2026-09-06 |  |  |  |  |  |  |  |  |  |  |  |  |  |
| CON-LEG101-LR-2200 |  | Installation of Gate (Sluice) valves (Direct buried) [Local – 01 Segment-02] | 10d | 2026-03-04 A | 2026-07-08 A | CON-LEG101-LR-2620, CON-LEG101-LR-2690, CON-LEG101-LR-1530, CON-LEG101-PR-1970, CON-LEG101-LR-1150 | 100% |  | 2026-08-05 | 2026-08-17 |  |  | Excavator [48 h]; Labor [100 h]; Skilled Labor [50 h]; Eq. Operator [50 h]; Pipe Fitter [50 h]; Piping TSE Network - Gate valves, on pipe with diameter 110 mm [7.37]; Piping TSE Network - Gate valves, on pipe with diameter 160 mm [1.34]; Piping TSE Network - Gate valves, on pipe with diameter 200 mm [2.01] | 44,220 | 44,220 | A12010 | L01 -02 | 1 |
| CON-LEG101-LR-2470 |  | Installation of Fire Hydrant [Local – 01 Segment-02] | 10d | 2026-03-04 A | 2026-09-06 A | CON-LEG101-LR-2390, CON-LEG101-PR-2470, CON-LEG101-LR-2310, CON-LEG101-LR-2460 | 100% |  | 2027-01-19 | 2027-01-31 |  |  | Piping TSE Network - 3-outlet fire hydrant (2 x 2.5 inch and 1 x 4.5 inch) in the form of a separate dry vacuum cylinder [9.38]; Excavator [48 h]; Labor [150 h]; Skilled Labor [50 h]; Eq. Operator [50 h]; Mason [50 h]; Pipe Fitter [50 h] | 84,420 | 84,420 | A12460 | L01 -02 | 1 |
| CON-LEG101-LR-2690 |  | Installation of Air Valve chambers [Local – 01 Segment-02] | 21d | 2026-03-15 A | 2026-09-05 A | CON-LEG101-LR-1530, CON-LEG101-LR-2620, CON-LEG101-PR-1970 | 100% |  | 2026-07-13 | 2026-08-06 |  |  | Excavator [48 h]; Labor [100 h]; Skilled Labor [50 h]; Eq. Operator [50 h]; Pipe Fitter [50 h]; Piping TSE Network - Air valve chamber; on less than 315 mm diameter pipeline [0.67] | 26,800 | 26,800 | A12810 | L01 -02 | 1 |
| CON-LEG101-LR-2320 |  | Installation of Wash-out Valves [Local – 01 Segment-02] | 19d | 2026-03-16 A | 2026-07-08 A | CON-LEG101-LR-2620, CON-LEG101-LR-2200, CON-LEG101-PR-1970 | 100% |  | 2026-08-15 | 2026-09-06 |  |  | Excavator [48 h]; Labor [100 h]; Skilled Labor [50 h]; Eq. Operator [50 h]; Pipe Fitter [50 h]; Piping TSE Network - Wash out valve, on pipes with diameter 110-400 mm [0.67] | 8,040 | 8,040 | A12230 | L01 -02 | 1 |
| CON-LEG101-LR-2390 |  | Installation of Air Valves [Local – 01 Segment-02] | 15d | 2026-03-16 A | 2026-07-08 A | CON-LEG101-LR-2690, CON-LEG101-LR-2320, CON-LEG101-PR-1970 | 100% |  | 2026-09-06 | 2026-09-24 |  |  | Excavator [48 h]; Labor [100 h]; Skilled Labor [50 h]; Eq. Operator [50 h]; Pipe Fitter [50 h]; Piping TSE Network - Air valve complete with gate valves, on pipes with diameter less than 315 mm. [0.67] | 6,030 | 6,030 | A12340 | L01 -02 | 1 |
| CON-LEG101-LR-2620 |  | Installation of Wash out chambers [Local – 01 Segment-02] | 21d | 2026-04-21 A | 2026-09-03 A | CON-LEG101-LR-1530, CON-LEG101-LR-2090 SS, CON-LEG101-PR-1970 | 100% |  | 2026-06-09 | 2026-07-04 |  |  | Excavator [48 h]; Labor [100 h]; Skilled Labor [50 h]; Eq. Operator [50 h]; Pipe Fitter [50 h]; Piping TSE Network - Wash out valve chamber; on 110-400 mm diameter pipeline [0.67] | 26,800 | 26,800 | A12700 | L01 -02 | 1 |

| ID | WBS | Activity | Duration | Start | Finish | Predecessors | Complete | Remaining | Planned start | Planned finish | Total float | Free float | Resources | Cost | Actual cost | Mapping Sheet Activity ID | % A | JEDDAH 1 - Area Name |
| --- | --- | --- | --- | --- | --- | --- | --- | --- | --- | --- | --- | --- | --- | --- | --- | --- | --- | --- |
|  | 6 | **Public Water Utility Distribution** |  | 2026-01-22 | 2026-09-05 |  |  |  |  |  |  |  |  |  |  |  |  |  |
|  | 2 | **Pipe Work** |  | 2026-01-22 | 2026-06-02 |  |  |  |  |  |  |  |  |  |  |  |  |  |
| CON-LEG101-LR-10050 |  | Excavation for Public Water Utility Distribution Piping [Local – 01 Segment-02] | 17d | 2026-01-22 A | 2026-02-05 A | CON-LEG101-LR-3420, CON-LEG101-LR-4210, CON-LEG101-LR-10960, CON-LEG101-EN-1690, CON-LEG101-EN-1700, CON-LEG101-EN-1710, CON-LEG101-EN-3440 | 100% |  | 2026-07-09 | 2026-07-29 |  |  | Public Water - 110mm Diameter Depth: 0.00 m - 1.50 m. [2.89]; Public Water - 110mm Diameter Depth: 1.51 m - 2.50 m. [1.88]; Public Water - 200mm Diameter Depth: 0.00m -1.50m [95]; Excavator [48 h]; Water Tanker [48 h]; Truck [96 h]; Crane [48 h]; Labor [200 h]; Driver [150 h]; Eq. Operator [100 h]; Public Water - 200mm Diameter Depth: 1.51m - 2.50m [42.5]; Public Water - 110mm Diameter Depth exceeds 2.50m; Public Water - 160mm Diameter Depth: 1.51m - 2.50m; Public Water - 160mm Diameter Depth: 0.00 m - 1.50 m.; Public Water - 160mm Diameter Depth exceeds 2.50m; Public Water - 200mm Diameter Depth exceeds 2.50m | 37,852.8 | 37,852.8 | A9030 | 1 | L01 -02 |
| CON-LEG101-LR-10150 |  | Granular bedding for Public Water Utility Distribution Piping [Local – 01 Segment-02] | 13d | 2026-01-26 A | 2026-05-21 A | CON-LEG101-LR-10050 | 100% |  | 2026-07-23 | 2026-08-08 |  |  | Public Water - 110mm Diameter Depth: 0.00 m - 1.50 m. [0.7]; Public Water - 110mm Diameter Depth: 1.51 m - 2.50 m. [0.47]; Public Water - 200mm Diameter Depth: 0.00m -1.50m [23.74]; Loader [48 h]; Truck [48 h]; Driver [50 h]; Eq. Operator [50 h]; Public Water - 200mm Diameter Depth: 1.51m - 2.50m [10.6]; Public Water - 110mm Diameter Depth exceeds 2.50m; Public Water - 160mm Diameter Depth: 1.51m - 2.50m; Public Water - 160mm Diameter Depth: 0.00 m - 1.50 m.; Public Water - 160mm Diameter Depth exceeds 2.50m; Public Water - 200mm Diameter Depth exceeds 2.50m | 9,448.5 | 9,448.5 | A9150 | 1 | L01 -02 |
| CON-LEG101-LR-10250 |  | Installation of Pipe for Public Water Utility Distribution Piping [Local – 01 Segment-02] | 18d | 2026-01-27 A | 2026-05-24 A | CON-LEG101-PR-4010, CON-LEG101-LR-10150, CON-LEG101-PR-1660 | 100% |  | 2026-07-30 | 2026-08-20 |  |  | Public Water - 110mm Diameter Depth: 0.00 m - 1.50 m. [6.49]; Public Water - 110mm Diameter Depth: 1.51 m - 2.50 m. [4.23]; Public Water - 200mm Diameter Depth: 0.00m -1.50m [213.72]; Excavator [29.67 h]; Crane [48 h]; Labor [150 h]; Skilled Labor [100 h]; Eq. Operator [100 h]; Plumber [50 h]; Pipe Fitter [50 h]; Public Water - 200mm Diameter Depth: 1.51m - 2.50m [95.62]; Public Water - 110mm Diameter Depth exceeds 2.50m; Public Water - 160mm Diameter Depth: 1.51m - 2.50m; Public Water - 160mm Diameter Depth: 0.00 m - 1.50 m.; Public Water - 160mm Diameter Depth exceeds 2.50m; Public Water - 200mm Diameter Depth exceeds 2.50m | 85,157.7 | 85,157.7 | A9270 | 1 | L01 -02 |
| CON-LEG101-LR-10550 |  | Granular Surround for Public Water Utility Distribution Piping [Local – 01 Segment-02] | 13d | 2026-02-01 A | 2026-05-25 A | CON-LEG101-LR-10450, CON-LEG101-EN-3450 | 100% |  | 2026-08-31 | 2026-09-15 |  |  | Public Water - 110mm Diameter Depth: 0.00 m - 1.50 m. [0.72]; Public Water - 110mm Diameter Depth: 1.51 m - 2.50 m. [0.47]; Public Water - 200mm Diameter Depth: 0.00m -1.50m [23.74]; Loader [48 h]; Truck [48 h]; Driver [50 h]; Eq. Operator [50 h]; Public Water - 200mm Diameter Depth: 1.51m - 2.50m [10.63]; Public Water - 110mm Diameter Depth exceeds 2.50m; Public Water - 160mm Diameter Depth: 1.51m - 2.50m; Public Water - 160mm Diameter Depth: 0.00 m - 1.50 m.; Public Water - 160mm Diameter Depth exceeds 2.50m; Public Water - 200mm Diameter Depth exceeds 2.50m | 9,462 | 9,462 | A9660 | 1 | L01 -02 |
| CON-LEG101-LR-10650 |  | Installation of Micron Marker Magnetic Tape [Local – 01 Segment-02] | 2d | 2026-02-25 A | 2026-05-31 A | CON-LEG101-LR-10550 | 100% |  | 2026-06-14 | 2026-06-16 |  |  | Public Water - 110mm Diameter Depth: 0.00 m - 1.50 m. [0.72]; Public Water - 110mm Diameter Depth: 1.51 m - 2.50 m. [0.47]; Public Water - 200mm Diameter Depth: 0.00m -1.50m [23.74]; Labor [100 h]; Public Water - 200mm Diameter Depth: 1.51m - 2.50m [10.63]; Public Water - 110mm Diameter Depth exceeds 2.50m; Public Water - 160mm Diameter Depth: 1.51m - 2.50m; Public Water - 160mm Diameter Depth: 0.00 m - 1.50 m.; Public Water - 160mm Diameter Depth exceeds 2.50m; Public Water - 200mm Diameter Depth exceeds 2.50m | 9,462 | 9,462 | A9780 | 1 | L01 -02 |
| CON-LEG101-LR-10750 |  | Backfilling to Subgrade Elevation [Local – 01 Segment-02] | 10d | 2026-02-26 A | 2026-06-01 A | CON-LEG101-LR-10650, CON-LEG101-EN-3440 | 100% |  | 2026-06-16 | 2026-06-28 |  |  | Public Water - 110mm Diameter Depth: 0.00 m - 1.50 m. [1.44]; Public Water - 110mm Diameter Depth: 1.51 m - 2.50 m. [0.94]; Public Water - 200mm Diameter Depth: 0.00m -1.50m [47.49]; Excavator [48 h]; Water Tanker [48 h]; Road Roller [48 h]; Bucket [124 h]; Compactor [124 h]; Labor [150 h]; Driver [125 h]; Eq. Operator [200 h]; Public Water - 200mm Diameter Depth: 1.51m - 2.50m [21.25]; Public Water - 110mm Diameter Depth exceeds 2.50m; Public Water - 160mm Diameter Depth: 1.51m - 2.50m; Public Water - 160mm Diameter Depth: 0.00 m - 1.50 m.; Public Water - 160mm Diameter Depth exceeds 2.50m; Public Water - 200mm Diameter Depth exceeds 2.50m | 18,923.1 | 18,923.1 | A9900 | 1 | L01 -02 |
| CON-LEG101-LR-10450 |  | Concrete encasement, pipe dia 110 mm [Local – 01 Segment-02] | 7d | 2026-03-15 A | 2026-05-25 A | CON-LEG101-LR-10350, CON-LEG101-EN-3450, CON-LEG101-PR-1430 | 100% |  | 2026-06-18 | 2026-06-27 |  |  | Public Water - Concrete encasement, pipe dia 110 mm [12.86]; Labor [200 h]; Carpenter [50 h]; Mason [100 h] | 4,501 | 4,501 | A9550 | 1 | L01 -02 |
| CON-LEG101-LR-10350 |  | Testing for Public Water Utility Distribution Piping [Local – 01 Segment-02] | 13d | 2026-03-17 A | 2026-06-02 A | CON-LEG101-LR-10250 | 100% |  | 2026-06-03 | 2026-06-18 |  |  | Public Water - 110mm Diameter Depth: 0.00 m - 1.50 m. [1.44]; Public Water - 110mm Diameter Depth: 1.51 m - 2.50 m. [0.94]; Public Water - 200mm Diameter Depth: 0.00m -1.50m [47.49]; Labor [200 h]; Skilled Labor [100 h]; Pipe Fitter [100 h]; Public Water - 200mm Diameter Depth: 1.51m - 2.50m [21.25]; Public Water - 110mm Diameter Depth exceeds 2.50m; Public Water - 160mm Diameter Depth: 1.51m - 2.50m; Public Water - 160mm Diameter Depth: 0.00 m - 1.50 m.; Public Water - 160mm Diameter Depth exceeds 2.50m; Public Water - 200mm Diameter Depth exceeds 2.50m | 18,923.1 | 18,923.1 | A9400 | 1 | L01 -02 |
|  | 1 | **Valves/Chamber** |  | 2026-03-15 | 2026-09-05 |  |  |  |  |  |  |  |  |  |  |  |  |  |
| CON-LEG101-LR-1260 |  | Installation of Air Valve chambers [Local – 01 Segment-02] | 21d | 2026-03-15 A | 2026-09-05 A | CON-LEG101-LR-10250, CON-LEG101-LR-10750, CON-LEG101-LR-1220, CON-LEG101-PR-1960 | 100% |  | 2026-08-31 | 2026-09-26 |  |  | Public Water - Air valve chamber; on less than 315 mm diameter pipeline [0.67]; Excavator [48 h]; Labor [100 h]; Skilled Labor [50 h]; Eq. Operator [50 h]; Pipe Fitter [50 h] | 26,800 | 26,800 | A10620 | 1 | L01 -02 |
| CON-LEG101-LR-1120 |  | Installation of Wash-out Valves [Local – 01 Segment-02] | 21d | 2026-04-01 A | 2026-07-08 A | CON-LEG101-LR-1220, CON-LEG101-LR-1010, CON-LEG101-PR-1960 | 100% |  | 2026-10-17 | 2026-11-10 |  |  | Public Water - Wash out valve, on pipes with diameter 110-400 mm [1.34]; Excavator [48 h]; Labor [100 h]; Skilled Labor [50 h]; Eq. Operator [50 h]; Pipe Fitter [50 h] | 16,080 | 16,080 | A10290 | 1 | L01 -02 |
| CON-LEG101-LR-1160 |  | Installation of Air Valves [Local – 01 Segment-02] | 21d | 2026-04-01 A | 2026-07-08 A | CON-LEG101-LR-1260, CON-LEG101-LR-1120, CON-LEG101-PR-1960 | 100% |  | 2026-11-10 | 2026-12-05 |  |  | Public Water - Air valve complete with gate valves, on pipes with diameter less than 315 mm. [0.67]; Excavator [48 h]; Labor [100 h]; Skilled Labor [50 h]; Eq. Operator [50 h]; Pipe Fitter [50 h] | 6,030 | 6,030 | A10380 | 1 | L01 -02 |
| CON-LEG101-LR-1220 |  | Installation of Wash out chambers [Local – 01 Segment-02] | 21d | 2026-04-21 A | 2026-09-03 A | CON-LEG101-LR-10750, CON-LEG101-LR-10250, CON-LEG101-LR-2690, CON-LEG101-PR-1960 | 100% |  | 2026-07-15 | 2026-08-09 |  |  | Public Water - Wash out valve chamber; on 110-400 mm diameter pipeline [1.34]; Excavator [48 h]; Labor [200 h]; Skilled Labor [50 h]; Eq. Operator [50 h]; Pipe Fitter [50 h] | 53,600 | 53,600 | A10530 | 1 | L01 -02 |
| CON-LEG101-LR-1010 |  | Installation of Gate (Sluice) valves (Direct buried) [Local – 01 Segment-02] | 21d | 2026-04-29 A | 2026-07-08 A | CON-LEG101-LR-1220, CON-LEG101-LR-1260, CON-LEG101-LR-10250, CON-LEG101-PR-1960 | 100% |  | 2026-08-13 | 2026-09-07 |  |  | Public Water - Gate valves, on pipe with diameter 110 mm [6.03]; Public Water - Gate valves, on pipe with diameter 200 mm [0.67]; Excavator [48 h]; Labor [100 h]; Skilled Labor [50 h]; Eq. Operator [50 h]; Pipe Fitter [50 h] | 23,450 | 23,450 | A10100 | 1 | L01 -02 |
|  | 1 | **Electrical Works** |  | 2026-04-04 | 2027-08-01 |  |  |  |  |  |  |  |  |  |  |  |  |  |
|  | 3 | **Low Voltage** |  | 2026-04-04 | 2027-08-01 |  |  |  |  |  |  |  |  |  |  |  |  |  |
| CON-LEG101-LR-7990 |  | Installation of Low Voltage Cables Duct Banks [Local – 01 Segment-02] | 7d | 2026-04-04 A | 2026-04-30 A | CON-LEG101-LR-7790, CON-LEG101-PR-1320 | 100% |  | 2026-09-30 | 2026-10-07 |  |  | Truck [200 h]; Bucket [48 h]; Compactor [120.57 h]; Labor [50 h]; Driver [50 h]; Eq. Operator [150 h]; Carpenter [200 h]; Steel Fixer [50 h]; Mason [50 h]; Electrician [50 h]; Duct bank for (3) cables [5]; Duct bank for (1) cables [32.66]; Duct bank for (2) cables [12.56] | 16,939 | 16,939 | A5400 | 1 | L01 -02 |
| CON-LEG101-LR-7790 |  | Excavation works for Low Voltage Cables [Local – 01 Segment-02] | 17d | 2026-06-24 A | 2026-07-30 A | CON-LEG101-LR-10960, CON-LEG101-LR-4210, CON-LEG101-LR-3510, CON-LEG101-LR-3420, CON-LEG101-LR-2090, CON-LEG101-LR-10750, CON-LEG101-LR-6890, CON-LEG101-EN-1680, CON-LEG101-EN-3440 | 100% |  | 2026-11-25 | 2026-12-14 |  |  | Excavator [144 h]; Truck [200 h]; Labor [600 h]; Driver [200 h]; Eq. Operator [150 h] |  |  | A5120 | 1 | L01 -02 |
| CON-LEG101-LR-7890 |  | Installation of Low Voltage Cables [Local – 01 Segment-02] | 17d | 2026-06-25 A | 2026-08-01 A | CON-LEG101-LR-7990, CON-LEG101-LR-7790, CON-LEG101-PR-1900 | 100% |  | 2027-01-06 | 2027-01-25 |  |  | Excavator [144 h]; Truck [300 h]; Bucket [144 h]; Compactor [144 h]; Labor [300 h]; Skilled Labor [150 h]; Driver [150 h]; Eq. Operator [450 h]; Electrician [300 h]; Stranded armored Cables, Copper, 4C,50mm² XLPE /SWA/PVC [2.01]; Stranded armored Cables, Copper, 4C,35mm² XLPE/SWA /PVC [261.3]; Stranded armored Cables, Copper, 4xC16mm² XLPE /SWA/PVC [1708.5]; Single Core Cable, Copper 1C,16mm² CU/PVC For Earth [261.3]; Single Core Cable, Copper 1C,10mm² CU/PVC For Earth [1708.5]; Single Core Cable, Copper 1C,25mm² CU/PVC For Earth [2.01] | 155,594.1 | 155,594.1 | A5230 | 1 | L01 -02 |
| CON-LEG101-LR-8770 |  | Installation of Earthing System [Local – 01 Segment-02] | 8d | 2026-07-06 A | 2027-08-01 | CON-LEG101-PR-1320, CON-LEG101-LR-7990, CON-LEG101-PR-1930, CON-LEG101-LR-7890, CON-LEG101-PR-1480, CON-LEG101-PR-1310, CON-LEG101-LR-8330 | 95% | 0.4d | 2027-04-28 | 2027-05-08 | 19.35d | 65.75d | Earthing for Industrial switch poles and GSM towers [1.34]; Crane [48 h]; Labor [100 h]; Eq. Operator [50 h]; Electrician [100 h] | 2,010 | 1,909.5 | A6640 | 0.95 | L01 -02 |
|  | 10 | **Telecommunications** |  | 2026-04-04 | 2026-09-10 |  |  |  |  |  |  |  |  |  |  |  |  |  |
| CON-LEG101-LR-8840 |  | Installation of Sand and soil encased duct banks for primary network [Local – 01 Segment-02] | 20d | 2026-04-04 A | 2026-04-30 A | CON-LEG101-LR-7790, CON-LEG101-EN-3280, CON-LEG101-EN-3440 | 100% |  | 2026-09-30 | 2026-10-22 |  |  | Truck [215.2 h]; Bucket [144 h]; Compactor [215.2 h]; Labor [150 h]; Driver [150 h]; Eq. Operator [540 h]; Carpenter [270 h]; Steel Fixer [150 h]; Mason [150 h]; Electrician [150 h]; 6-ways ducts, 50mm diameter, (HDPE TYPE) . [555.36]; 6-ways ducts, 50mm diameter, (HDPE TYPE) + 2 x 32 mm HDPE sub-ducts [259.39] | 121,846.7 | 121,846.7 | A6780 | 1 | L01 -02 |
| CON-LEG101-LR-8940 |  | Installation of Concrete encased duct banks for primary network [Local – 01 Segment-02] | 11d | 2026-04-08 A | 2026-04-30 A | CON-LEG101-PR-3180, CON-LEG101-PR-4020, CON-LEG101-LR-8840, CON-LEG101-PR-1430, CON-LEG101-LR-7990 | 100% |  | 2026-10-29 | 2026-11-10 |  |  | Truck [104.36 h]; Bucket [48 h]; Compactor [48 h]; Labor [50 h]; Driver [50 h]; Eq. Operator [100 h]; Carpenter [104.55 h]; Steel Fixer [50 h]; Mason [50 h]; Electrician [50 h]; 6-ways ducts, 50mm diameter, (HDPE TYPE) + 4 x 32 mm HDPE sub-ducts [218.89]; 6-ways ducts, 50mm diameter, (HDPE TYPE) . [85.53] | 55,411.75 | 55,411.75 | A6920 | 1 | L01 -02 |
| CON-LEG101-LR-9340 |  | Installation of Reinforced concrete manhole [Local – 01 Segment-02] | 21d | 2026-04-09 A | 2026-09-10 A | CON-LEG101-LR-9240, CON-LEG101-PR-3260 | 100% |  | 2027-03-20 | 2027-04-12 |  |  | Truck [48 h]; Bucket [48 h]; Compactor [48 h]; Labor [50 h]; Driver [50 h]; Eq. Operator [100 h]; Carpenter [50 h]; Steel Fixer [50 h]; Mason [50 h]; Electrician [50 h]; Reinforced concrete manhole Type 1- 1200x1500x1200mm [2.01]; Reinforced concrete manhole Type 2- 1200x1500x1200mm [6.7] | 148,070 | 148,070 | A7530 | 1 | L01 -02 |
| CON-LEG101-LR-9040 |  | Installation of Sand encased duct banks for secondary network [Local – 01 Segment-02] | 14d | 2026-07-11 A | 2026-09-10 A | CON-LEG101-LR-8940, CON-LEG101-EN-3440, CON-LEG101-LR-7890, CON-LEG101-MS-1130 | 100% |  | 2027-02-14 | 2027-03-02 |  |  | Truck [48 h]; Bucket [48 h]; Compactor [48 h]; Labor [50 h]; Driver [50 h]; Eq. Operator [100 h]; Carpenter [50 h]; Steel Fixer [50 h]; Mason [50 h]; Electrician [50 h]; 2 x 32 mm HDPE sub-ducts [87.23]; 6-ways ducts, 50mm diameter, (HDPE TYPE) + 6 x 32 mm HDPE sub-ducts [86.23] | 25,969 | 25,969 | A7080 | 1 | L01 -02 |
| CON-LEG101-LR-9140 |  | Installation of Sand and soil encased duct banks, for combined network of primary and secondary [Local – 01 Segment-02 | 18d | 2026-07-11 A | 2026-09-10 A | CON-LEG101-PR-3250, CON-LEG101-LR-9040, CON-LEG101-EN-3440 | 100% |  | 2027-03-03 | 2027-03-23 |  |  | Truck [192 h]; Bucket [192 h]; Compactor [192 h]; Labor [200 h]; Driver [200 h]; Eq. Operator [400 h]; Carpenter [200 h]; Steel Fixer [200 h]; Mason [200 h]; Electrician [200 h]; 4 x 32 mm HDPE sub-ducts [17.29]; 6-ways ducts, 50mm diameter, (HDPE TYPE) + 2 x 32 mm HDPE sub-ducts [6.13] | 6,216.5 | 6,216.5 | A7240 | 1 | L01 -02 |
| CON-LEG101-LR-9240 |  | Installation of Concrete encased duct banks for for combined network of primary and secondary [Local – 01 Segment-02] | 9d | 2026-07-11 A | 2026-09-10 A | CON-LEG101-LR-9140, CON-LEG101-PR-1430, CON-LEG101-LR-8330 | 100% |  | 2027-04-21 | 2027-05-02 |  |  | Truck [48 h]; Bucket [48 h]; Compactor [48 h]; Labor [50 h]; Driver [50 h]; Eq. Operator [100 h]; Carpenter [50 h]; Steel Fixer [50 h]; Mason [50 h]; Electrician [50 h]; 6 x 32 mm HDPE sub-ducts [4.72] | 1,888 | 1,888 | A7380 | 1 | L01 -02 |

| ID | WBS | Activity | Duration | Start | Finish | Predecessors | Complete | Remaining | Planned start | Planned finish | Total float | Free float | Resources | Cost | Actual cost | Mapping Sheet Activity ID | % A | JEDDAH 1 - Area Name |
| --- | --- | --- | --- | --- | --- | --- | --- | --- | --- | --- | --- | --- | --- | --- | --- | --- | --- | --- |
|  | 11 | **CCTV feeding system and GSM** |  | 2026-07-04 | 2026-09-07 |  |  |  |  |  |  |  |  |  |  |  |  |  |
| CON-LEG101-LR-8560 |  | Excavation works for Low Voltage Cables for CCTV feeding system and GSM [Local – 01 Segment-02] | 8d | 2026-07-04 A | 2026-09-06 A | CON-LEG101-LR-9040, CON-LEG101-LR-9140, CON-LEG101-LR-8840, CON-LEG101-EN-3290, CON-LEG101-EN-3440 | 100% |  | 2027-02-21 | 2027-03-03 |  |  | Excavator [48 h]; Truck [48 h]; Labor [200 h]; Driver [50 h]; Eq. Operator [50 h]; Duct bank for (1) cables [16.75] | 4,020 | 4,020 | A6340 | 1 | L01 -02 |
| CON-LEG101-LR-8630 |  | Installation of Low Voltage Cables for CCTV feeding system and GSM [Local – 01 Segment-02] | 8d | 2026-07-04 A | 2026-09-07 A | CON-LEG101-LR-8560, CON-LEG101-PR-1900 | 100% |  | 2027-03-03 | 2027-03-13 |  |  | Excavator [48 h]; Truck [48 h]; Bucket [48 h]; Compactor [48 h]; Labor [100 h]; Skilled Labor [50 h]; Driver [50 h]; Eq. Operator [150 h]; Electrician [100 h]; Stranded Copper wire, , 3xC,2 mm² XLPE/PVC [11.73]; Stranded armored Cables, Copper, 4C,35mm² XLPE/SWA /PVC [41.54]; Stranded armored Cables, Copper, 4xC16mm² XLPE /SWA/PVC [157.45]; Single Core Cable, Copper 1C,16mm² CU/PVC For Earth [41.54]; Single Core Cable, Copper 1C,10mm² CU/PVC For Earth [157.45] | 18,626.25 | 18,626.25 | A6420 | 1 | L01 -02 |
| CON-LEG101-LR-9700 |  | Installation of Outdoor PTZ IP66 [Local – 01 Segment-02] | 2d | 2026-07-04 A | 2026-09-03 A | CON-LEG101-LR-9620, CON-LEG101-PR-3650 | 100% |  | 2027-03-15 | 2027-03-17 |  |  | Truck [48 h]; Bucket [48 h]; Compactor [48 h]; Labor [50 h]; Driver [50 h]; Eq. Operator [100 h]; Carpenter [50 h]; Steel Fixer [50 h]; Mason [50 h]; Electrician [50 h]; "Outdoor PTZ with IR, HDTV 1080 and 31x optical, 12x digital, total 372x zoom, H264/265 with Motion JPEG. [0.67] | 23,450 | 23,450 | A8210 | 1 | L01 -02 |
| CON-LEG101-LR-9950 |  | Installation of Short Range wireless point to point wireless bridge [Local – 01 Segment-02] | 7d | 2026-07-04 A | 2026-09-03 A | CON-LEG101-LR-9700, CON-LEG101-PR-3910 | 100% |  | 2027-03-17 | 2027-03-25 |  |  | Truck [48 h]; Bucket [48 h]; Compactor [48 h]; Labor [50 h]; Driver [50 h]; Eq. Operator [100 h]; Carpenter [50 h]; Steel Fixer [50 h]; Mason [50 h]; Electrician [50 h]; Short Range wireless point to point wireless bridge [1.34] | 17,420 | 17,420 | A8720 | 1 | L01 -02 |
| CON-LEG101-LR-9620 |  | Installation of IP Outdoor CCTV POE Camera,5 MP, Metal Housing [Local – 01 Segment-02] | 5d | 2026-07-08 A | 2026-09-03 A | CON-LEG101-LR-8630, CON-LEG101-PR-3610 | 100% |  | 2027-03-14 | 2027-03-20 |  |  | Truck [48 h]; Bucket [48 h]; Compactor [48 h]; Labor [50 h]; Driver [50 h]; Eq. Operator [100 h]; Carpenter [50 h]; Steel Fixer [50 h]; Mason [50 h]; Electrician [50 h]; IP Outdoor CCTV POE Camera,5 MP, Metal Housing [2.68] | 13,400 | 13,400 | A8100 | 1 | L01 -02 |
|  | 12 | **Earthing System** |  | 2026-07-07 | 2027-08-05 |  |  |  |  |  |  |  |  |  |  |  |  |  |
| CON-LEG101-LR-8290 |  | Installation of Earthing for Distribution panels,SL feeder pillars, KWH, Unit substations and RMU [Local – 01 Segment-02 | 6d | 2026-07-07 A | 2027-08-05 | CON-LEG101-LR-9950, CON-LEG101-LR-8190, CON-LEG101-LR-9340, CON-LEG101-PR-1480, CON-LEG101-LR-8560, CON-LEG101-PR-1310 | 20% | 4.8d | 2027-05-08 | 2027-05-19 | -103.65d | 0d | Earthing for Distribution panels,SL feeder pillars, KWH, Unit substations and RMU; Crane [48 h]; Labor [100 h]; Eq. Operator [50 h]; Electrician [100 h] |  |  | A5820 | 0.2 | L01 -02 |
|  | 9 | **Road Lighting** |  | 2026-03-28 | 2027-07-05 |  |  |  |  |  |  |  |  |  |  |  |  |  |
| CON-LEG101-LR-8090 |  | Installation of Lighting poles [Local – 01 Segment-02] | 17d | 2026-03-28 A | 2026-08-17 A | CON-LEG101-PR-1950, CON-LEG101-LR-8080, CON-LEG101-PR-1910 | 100% |  | 2027-01-02 | 2027-01-21 |  |  | Lighting poles with 1 arm, height of (8 ) meters, including the power distribution box, cables, and RCC foundation. [34.84]; Excavator [48 h]; Truck [48 h]; Crane [48 h]; Labor [150 h]; Driver [50 h]; Eq. Operator [100 h]; Carpenter [91.18 h]; Steel Fixer [50 h]; Mason [50 h]; Electrician [150 h] | 118,456 | 118,456 | A5540 | 1 | L01 -02 |
| CON-LEG101-LR-8190 |  | Installation of Street Lighting Luminaire [Local – 01 Segment-02] | 6d | 2026-05-20 A | 2026-08-15 A | CON-LEG101-LR-8090, CON-LEG101-PR-1920, CON-LEG101-LR-8440 | 100% |  | 2027-03-03 | 2027-03-10 |  |  | Street Lighting( LED) Luminous efficacy ? 120Lum/w complete with control gear and lamp, (100) WATT. Max. [34.84]; Crane [48 h]; Labor [150 h]; Skilled Labor [100 h]; Eq. Operator [50 h]; Electrician [150 h] | 34,840 | 34,840 | A5680 | 1 | L01 -02 |
| CON-LEG101-LR-8440 |  | Installation of Street Lighting feeder pillars / Lighting panels [Local – 01 Segment-02] | 3d | 2026-07-05 A | 2026-09-10 A | CON-LEG101-LR-8090, CON-LEG101-PR-1940, CON-LEG101-PR-2550, CON-LEG101-LR-8430 | 100% |  | 2027-03-30 | 2027-04-03 |  |  | Street Lighting feeder pillars [1.34]; Crane [48 h]; Labor [100 h]; Eq. Operator [50 h]; Carpenter [100 h]; Electrician [200 h] | 46,900 | 46,900 | A6040 | 1 | L01 -02 |
| CON-LEG101-LR-8340 |  | Installation of Earthing for Streetlighting feeders for every end pole circuits. [Local – 01 Segment-02] | 6d | 2026-08-05 A | 2027-07-05 | CON-LEG101-LR-8440, CON-LEG101-LR-8090, CON-LEG101-LR-8190, CON-LEG101-PR-1480, CON-LEG101-PR-1310 | 70% | 1.8d | 2027-05-13 | 2027-05-25 | -104d | 0d | Earthing for Streetlighting feeders for every end pole circuits.; Crane [48 h]; Labor [100 h]; Eq. Operator [50 h]; Carpenter [100 h]; Electrician [200 h] |  |  | A5900 | 0.6 | L01 -02 |
|  | 3 | **LOCAL - 01 Segment-03 (From 2+133 to 3+200)** |  | 2026-01-14 | 2027-07-10 |  |  |  |  |  |  |  |  |  |  |  |  |  |
|  | 5 | **TSE Network** |  | 2026-01-14 | 2026-11-24 |  |  |  |  |  |  |  |  |  |  |  |  |  |
|  | 2 | **Pipe Work** |  | 2026-01-14 | 2026-04-16 |  |  |  |  |  |  |  |  |  |  |  |  |  |
| CON-LEG101-LR-1320 |  | Excavation for TSE Network [Local – 01 Segment-03] | 19d | 2026-01-14 A | 2026-01-24 A | CON-LEG101-LR-3520, CON-LEG101-LR-3430, CON-LEG101-LR-11060, CON-LEG101-LR-4220, CON-LEG101-LR-2800, CON-LEG101-EN-1720, CON-LEG101-EN-1730, CON-LEG101-EN-1740, CON-LEG101-EN-1810 | 100% |  | 2026-07-01 | 2026-07-23 |  |  | Excavator [41.37 h]; Water Tanker [41.89 h]; Truck [96 h]; Crane [48 h]; Labor [200 h]; Driver [150 h]; Eq. Operator [100 h]; Piping TSE Network - 110mm Diameter Depth: 0.00 m - 1.50 m. [6.9]; Piping TSE Network - 110mm Diameter Depth: 1.51m - 2.50m [10.14]; Piping TSE Network - 160mm Diameter Depth: 0.00 m - 1.50 m. [10.95]; Piping TSE Network - 160mm Diameter Depth: 1.51m - 2.50m [32.48]; Piping TSE Network - 200mm Diameter Depth: 0.00 m - 1.50 m. [37.27]; Piping TSE Network - 200mm Diameter Depth: 1.51m - 2.50m [71.81]; Piping TSE Network - 200mm Diameter Depth: 2.51m - 3.50m; Piping TSE Network - 200mm Diameter Depth exceeds 3.50m; Piping TSE Network - 110mm Diameter Depth exceeds 2.50m; Piping TSE Network - 160mm Diameter Depth exceeds 2.50m; Piping TSE Network - 250mm Diameter Depth: 0.00 m - 1.50 m.; Piping TSE Network - 250mm Diameter Depth: 1.51m - 2.50m; Piping TSE Network - 250mm Diameter Depth exceeds 2.50m | 48,774.9 | 48,774.9 | A10960 | 1 | L01-03 |
| CON-LEG101-LR-1430 |  | Granular bedding for TSE Network [Local – 01 Segment-03] | 8d | 2026-01-17 A | 2026-03-30 A | CON-LEG101-LR-1320 | 100% |  | 2026-07-21 | 2026-07-30 |  |  | Loader [48 h]; Truck [48 h]; Driver [50 h]; Eq. Operator [50 h]; Piping TSE Network - 110mm Diameter Depth: 0.00 m - 1.50 m. [1.73]; Piping TSE Network - 110mm Diameter Depth: 1.51m - 2.50m [2.54]; Piping TSE Network - 160mm Diameter Depth: 0.00 m - 1.50 m. [2.74]; Piping TSE Network - 160mm Diameter Depth: 1.51m - 2.50m [8.12]; Piping TSE Network - 200mm Diameter Depth: 0.00 m - 1.50 m. [9.32]; Piping TSE Network - 200mm Diameter Depth: 1.51m - 2.50m [17.96]; Piping TSE Network - 200mm Diameter Depth: 2.51m - 3.50m; Piping TSE Network - 200mm Diameter Depth exceeds 3.50m; Piping TSE Network - 110mm Diameter Depth exceeds 2.50m; Piping TSE Network - 160mm Diameter Depth exceeds 2.50m; Piping TSE Network - 250mm Diameter Depth: 0.00 m - 1.50 m.; Piping TSE Network - 250mm Diameter Depth: 1.51m - 2.50m; Piping TSE Network - 250mm Diameter Depth exceeds 2.50m | 12,199.6 | 12,199.6 | A11080 | 1 | L01-03 |
| CON-LEG101-LR-1550 |  | Installation of Pipe for TSE Network [Local – 01 Segment-03] | 20d | 2026-01-19 A | 2026-03-31 A | CON-LEG101-PR-2590, CON-LEG101-LR-1430, CON-LEG101-PR-1690 | 100% |  | 2026-07-30 | 2026-08-23 |  |  | Excavator [24.2 h]; Crane [48 h]; Labor [150 h]; Skilled Labor [100 h]; Eq. Operator [100 h]; Plumber [50 h]; Pipe Fitter [50 h]; Piping TSE Network - 110mm Diameter Depth: 0.00 m - 1.50 m. [15.53]; Piping TSE Network - 110mm Diameter Depth: 1.51m - 2.50m [22.83]; Piping TSE Network - 160mm Diameter Depth: 0.00 m - 1.50 m. [24.65]; Piping TSE Network - 160mm Diameter Depth: 1.51m - 2.50m [73.08]; Piping TSE Network - 200mm Diameter Depth: 0.00 m - 1.50 m. [83.85]; Piping TSE Network - 200mm Diameter Depth: 1.51m - 2.50m [161.62]; Piping TSE Network - 200mm Diameter Depth: 2.51m - 3.50m; Piping TSE Network - 200mm Diameter Depth exceeds 3.50m; Piping TSE Network - 110mm Diameter Depth exceeds 2.50m; Piping TSE Network - 160mm Diameter Depth exceeds 2.50m; Piping TSE Network - 250mm Diameter Depth: 0.00 m - 1.50 m.; Piping TSE Network - 250mm Diameter Depth: 1.51m - 2.50m; Piping TSE Network - 250mm Diameter Depth exceeds 2.50m | 109,765.1 | 109,765.1 | A11200 | 1 | L01-03 |
| CON-LEG101-LR-1870 |  | Granular Surround for TSE Network [Local – 01 Segment-03] | 14d | 2026-01-29 A | 2026-04-04 A | CON-LEG101-LR-1770, CON-LEG101-EN-3450 | 100% |  | 2026-08-09 | 2026-08-25 |  |  | Loader [48 h]; Truck [400 h]; Driver [100 h]; Eq. Operator [50 h]; Piping TSE Network - 110mm Diameter Depth: 0.00 m - 1.50 m. [1.73]; Piping TSE Network - 110mm Diameter Depth: 1.51m - 2.50m [2.54]; Piping TSE Network - 160mm Diameter Depth: 0.00 m - 1.50 m. [2.74]; Piping TSE Network - 160mm Diameter Depth: 1.51m - 2.50m [8.12]; Piping TSE Network - 200mm Diameter Depth: 0.00 m - 1.50 m. [9.32]; Piping TSE Network - 200mm Diameter Depth: 1.51m - 2.50m [17.96]; Piping TSE Network - 200mm Diameter Depth: 2.51m - 3.50m; Piping TSE Network - 200mm Diameter Depth exceeds 3.50m; Piping TSE Network - 110mm Diameter Depth exceeds 2.50m; Piping TSE Network - 160mm Diameter Depth exceeds 2.50m; Piping TSE Network - 250mm Diameter Depth: 0.00 m - 1.50 m.; Piping TSE Network - 250mm Diameter Depth: 1.51m - 2.50m [5]; Piping TSE Network - 250mm Diameter Depth exceeds 2.50m | 13,999.6 | 13,999.6 | A11570 | 1 | L01-03 |
| CON-LEG101-LR-1980 |  | Installation of Micron Marker Magnetic Tape [Local – 01 Segment-03] | 6d | 2026-02-25 A | 2026-04-05 A | CON-LEG101-LR-1870 | 100% |  | 2026-07-15 | 2026-07-22 |  |  | Piping TSE Network - 200mm Diameter Depth: 2.51m - 3.50m; Piping TSE Network - 200mm Diameter Depth exceeds 3.50m; Piping TSE Network - 110mm Diameter Depth exceeds 2.50m; Piping TSE Network - 160mm Diameter Depth exceeds 2.50m; Piping TSE Network - 250mm Diameter Depth: 0.00 m - 1.50 m.; Piping TSE Network - 250mm Diameter Depth: 1.51m - 2.50m; Piping TSE Network - 250mm Diameter Depth exceeds 2.50m; Labor [200 h]; Piping TSE Network - 110mm Diameter Depth: 0.00 m - 1.50 m. [1.73]; Piping TSE Network - 110mm Diameter Depth: 1.51m - 2.50m [2.54]; Piping TSE Network - 160mm Diameter Depth: 0.00 m - 1.50 m. [2.74]; Piping TSE Network - 160mm Diameter Depth: 1.51m - 2.50m [8.12]; Piping TSE Network - 200mm Diameter Depth: 0.00 m - 1.50 m. [9.32]; Piping TSE Network - 200mm Diameter Depth: 1.51m - 2.50m [17.96] | 12,199.6 | 12,199.6 | A11690 | 1 | L01-03 |
| CON-LEG101-LR-2100 |  | Backfilling to Subgrade Elevation [Local – 01 Segment-03] | 14d | 2026-02-26 A | 2026-04-06 A | CON-LEG101-LR-1980, CON-LEG101-EN-3440 | 100% |  | 2026-07-22 | 2026-08-08 |  |  | Piping TSE Network - 200mm Diameter Depth: 2.51m - 3.50m; Piping TSE Network - 200mm Diameter Depth exceeds 3.50m; Piping TSE Network - 110mm Diameter Depth exceeds 2.50m; Piping TSE Network - 160mm Diameter Depth exceeds 2.50m; Piping TSE Network - 250mm Diameter Depth: 0.00 m - 1.50 m.; Piping TSE Network - 250mm Diameter Depth: 1.51m - 2.50m; Piping TSE Network - 250mm Diameter Depth exceeds 2.50m; Excavator [96 h]; Water Tanker [96 h]; Road Roller [96 h]; Bucket [182.29 h]; Compactor [182.29 h]; Labor [400 h]; Driver [150 h]; Eq. Operator [400 h]; Piping TSE Network - 110mm Diameter Depth: 0.00 m - 1.50 m. [3.45]; Piping TSE Network - 110mm Diameter Depth: 1.51m - 2.50m [5.07]; Piping TSE Network - 160mm Diameter Depth: 0.00 m - 1.50 m. [5.48]; Piping TSE Network - 160mm Diameter Depth: 1.51m - 2.50m [16.24]; Piping TSE Network - 200mm Diameter Depth: 0.00 m - 1.50 m. [18.63]; Piping TSE Network - 200mm Diameter Depth: 1.51m - 2.50m [35.91] | 24,389 | 24,389 | A11810 | 1 | L01-03 |
| CON-LEG101-LR-1770 |  | Concrete encasement, pipe dia 110 mm [Local – 01 Segment-03] | 3d | 2026-04-01 A | 2026-04-02 A | CON-LEG101-LR-1660, CON-LEG101-EN-3450, CON-LEG101-PR-1430 | 100% |  | 2026-08-03 | 2026-08-06 |  |  | Labor [300 h]; Carpenter [50 h]; Mason [100 h]; Piping TSE Network - Concrete encasement, pipe dia 110 mm [4.56] | 1,596 | 1,596 | A11470 | 1 | L01-03 |
| CON-LEG101-LR-1660 |  | Testing for TSE Network [Local – 01 Segment-03] | 14d | 2026-04-14 A | 2026-04-16 A | CON-LEG101-LR-1550 | 100% |  | 2026-06-28 | 2026-07-14 |  |  | Labor [235.71 h]; Skilled Labor [100 h]; Pipe Fitter [100 h]; Piping TSE Network - 110mm Diameter Depth: 0.00 m - 1.50 m. [3.45]; Piping TSE Network - 110mm Diameter Depth: 1.51m - 2.50m [5.07]; Piping TSE Network - 160mm Diameter Depth: 0.00 m - 1.50 m. [5.48]; Piping TSE Network - 160mm Diameter Depth: 1.51m - 2.50m [16.24]; Piping TSE Network - 200mm Diameter Depth: 0.00 m - 1.50 m. [18.63]; Piping TSE Network - 200mm Diameter Depth: 1.51m - 2.50m [35.91]; Piping TSE Network - 200mm Diameter Depth: 2.51m - 3.50m; Piping TSE Network - 200mm Diameter Depth exceeds 3.50m; Piping TSE Network - 110mm Diameter Depth exceeds 2.50m; Piping TSE Network - 160mm Diameter Depth exceeds 2.50m; Piping TSE Network - 250mm Diameter Depth: 0.00 m - 1.50 m.; Piping TSE Network - 250mm Diameter Depth: 1.51m - 2.50m; Piping TSE Network - 250mm Diameter Depth exceeds 2.50m | 24,389 | 24,389 | A11320 | 1 | L01-03 |

| ID | WBS | Activity | Duration | Start | Finish | Predecessors | Complete | Remaining | Planned start | Planned finish | Total float | Free float | Resources | Cost | Actual cost | Mapping Sheet Activity ID | % A | JEDDAH 1 - Area Name |
| --- | --- | --- | --- | --- | --- | --- | --- | --- | --- | --- | --- | --- | --- | --- | --- | --- | --- | --- |
|  | 1 | **Valves/Chamber** |  | 2026-03-04 | 2026-11-24 |  |  |  |  |  |  |  |  |  |  |  |  |  |
| CON-LEG101-LR-2210 |  | Installation of Gate (Sluice) valves (Direct buried) [Local – 01 Segment-03] | 19d | 2026-03-04 A | 2026-07-09 A | CON-LEG101-LR-2630, CON-LEG101-LR-1550, CON-LEG101-PR-1970 | 100% |  | 2026-08-17 | 2026-09-08 |  |  | Excavator [48 h]; Labor [200 h]; Skilled Labor [50 h]; Eq. Operator [50 h]; Pipe Fitter [50 h]; Piping TSE Network - Gate valves, on pipe with diameter 110 mm [7.37]; Piping TSE Network - Gate valves, on pipe with diameter 160 mm [1.34]; Piping TSE Network - Gate valves, on pipe with diameter 200 mm [2.01] | 44,220 | 44,220 | A12020 | 1 | L01-03 |
| CON-LEG101-LR-2480 |  | Installation of Fire Hydrant [Local – 01 Segment-03] | 10d | 2026-03-04 A | 2026-09-29 A | CON-LEG101-LR-2330, CON-LEG101-PR-1970, CON-LEG101-LR-15050, CON-LEG101-PR-2470, CON-LEG101-LR-2470 SS | 100% |  | 2027-01-19 | 2027-01-31 |  |  | Piping TSE Network - 3-outlet fire hydrant (2 x 2.5 inch and 1 x 4.5 inch) in the form of a separate dry vacuum cylinder [9.38]; Excavator [48 h]; Labor [150 h]; Skilled Labor [50 h]; Eq. Operator [50 h]; Mason [50 h]; Pipe Fitter [50 h] | 84,420 | 84,420 | A12470 | 0.95 | L01-03 |
| CON-LEG101-LR-15040 |  | Installation of Air Valve chambers [Local – 01 Segment-03] | 10d | 2026-04-01 A | 2026-11-24 | CON-LEG101-LR-2630 | 95% | 0.5d | 2026-09-05 | 2026-09-16 | 88.75d | 0d | Excavator [48 h]; Labor [400 h]; Skilled Labor [50 h]; Eq. Operator [50 h]; Pipe Fitter [50 h]; Piping TSE Network - Air valve chamber; on less than 315 mm diameter pipeline [0.67] | 26,800 | 25,460 | A10620 | 0.95 | L01-03 |
| CON-LEG101-LR-15050 |  | Installation of Air Valves [Local – 01 Segment-03] | 10d | 2026-04-01 A | 2026-07-09 A | CON-LEG101-LR-15040 | 100% |  | 2026-09-16 | 2026-09-29 |  |  | Excavator [48 h]; Labor [300 h]; Skilled Labor [50 h]; Eq. Operator [50 h]; Pipe Fitter [50 h]; Piping TSE Network - Air valve complete with gate valves, on pipes with diameter less than 315 mm. [0.67] | 6,030 | 6,030 | A10380 | 1 | L01-03 |
| CON-LEG101-LR-2330 |  | Installation of Wash-out Valves [Local – 01 Segment-03] | 15d | 2026-04-01 A | 2026-07-09 A | CON-LEG101-LR-2210, CON-LEG101-PR-1970 | 100% |  | 2026-09-20 | 2026-10-08 |  |  | Excavator [48 h]; Labor [200 h]; Skilled Labor [50 h]; Eq. Operator [50 h]; Pipe Fitter [50 h]; Piping TSE Network - Wash out valve, on pipes with diameter 110-400 mm [0.67] | 8,040 | 8,040 | A12240 | 1 | L01-03 |
| CON-LEG101-LR-2630 |  | Installation of Wash out chambers [Local – 01 Segment-03] | 15d | 2026-04-27 A | 2026-11-23 | CON-LEG101-LR-1550, CON-LEG101-PR-1970, CON-LEG101-LR-2100 | 95% | 0.75d | 2026-06-13 | 2026-06-29 | 88.75d | 0d | Excavator [48 h]; Labor [100 h]; Skilled Labor [50 h]; Eq. Operator [50 h]; Pipe Fitter [50 h]; Piping TSE Network - Wash out valve chamber; on 110-400 mm diameter pipeline [0.67] | 26,800 | 25,460 | A12710 | 0.95 | L01-03 |
|  | 6 | **Public Water Utility Distribution** |  | 2026-01-14 | 2026-11-24 |  |  |  |  |  |  |  |  |  |  |  |  |  |
|  | 2 | **Pipe Work** |  | 2026-01-14 | 2026-04-11 |  |  |  |  |  |  |  |  |  |  |  |  |  |
| CON-LEG101-LR-10060 |  | Excavation for Public Water Utility Distribution Piping [Local – 01 Segment-03] | 17d | 2026-01-14 A | 2026-01-24 A | CON-LEG101-LR-1320, CON-LEG101-EN-1690, CON-LEG101-EN-1700, CON-LEG101-EN-1710, CON-LEG101-EN-3440 | 100% |  | 2026-07-23 | 2026-08-12 |  |  | Public Water - 110mm Diameter Depth: 0.00 m - 1.50 m. [2.89]; Public Water - 110mm Diameter Depth: 1.51 m - 2.50 m. [1.88]; Public Water - 110mm Diameter Depth exceeds 2.50m [2.68]; Public Water - 200mm Diameter Depth: 0.00m -1.50m [97.86]; Excavator [17 h]; Water Tanker [17 h]; Truck [96 h]; Crane [48 h]; Labor [200 h]; Driver [150 h]; Eq. Operator [100 h]; Public Water - 200mm Diameter Depth: 1.51m - 2.50m [43.78]; Public Water - 200mm Diameter Depth exceeds 2.50m [2.68]; Public Water - 160mm Diameter Depth: 1.51m - 2.50m; Public Water - 160mm Diameter Depth: 0.00 m - 1.50 m.; Public Water - 160mm Diameter Depth exceeds 2.50m | 43,517.6 | 43,517.6 | A9040 | 1 | L01-03 |
| CON-LEG101-LR-10160 |  | Granular bedding for Public Water Utility Distribution Piping [Local – 01 Segment-03] | 13d | 2026-01-17 A | 2026-03-30 A | CON-LEG101-LR-10060 | 100% |  | 2026-08-06 | 2026-08-20 |  |  | Public Water - 110mm Diameter Depth: 0.00 m - 1.50 m. [0.72]; Public Water - 110mm Diameter Depth: 1.51 m - 2.50 m. [0.47]; Public Water - 110mm Diameter Depth exceeds 2.50m [0.67]; Public Water - 200mm Diameter Depth: 0.00m -1.50m [24.47]; Loader [48 h]; Truck [48 h]; Driver [50 h]; Eq. Operator [50 h]; Public Water - 200mm Diameter Depth: 1.51m - 2.50m [10.95]; Public Water - 200mm Diameter Depth exceeds 2.50m [0.67]; Public Water - 160mm Diameter Depth: 1.51m - 2.50m; Public Water - 160mm Diameter Depth: 0.00 m - 1.50 m.; Public Water - 160mm Diameter Depth exceeds 2.50m | 10,881.8 | 10,881.8 | A9160 | 1 | L01-03 |
| CON-LEG101-LR-10260 |  | Installation of Pipe for Public Water Utility Distribution Piping [Local – 01 Segment-03] | 18d | 2026-01-19 A | 2026-03-31 A | CON-LEG101-PR-4010, CON-LEG101-LR-10160, CON-LEG101-PR-1660 | 100% |  | 2026-08-22 | 2026-09-10 |  |  | Public Water - 110mm Diameter Depth: 0.00 m - 1.50 m. [6.49]; Public Water - 110mm Diameter Depth: 1.51 m - 2.50 m. [4.23]; Public Water - 110mm Diameter Depth exceeds 2.50m [6.03]; Public Water - 200mm Diameter Depth: 0.00m -1.50m [220.19]; Excavator [48 h]; Crane [48 h]; Labor [241.67 h]; Skilled Labor [100 h]; Eq. Operator [100 h]; Plumber [50 h]; Pipe Fitter [50 h]; Public Water - 200mm Diameter Depth: 1.51m - 2.50m [98.5]; Public Water - 200mm Diameter Depth exceeds 2.50m [6.03]; Public Water - 160mm Diameter Depth: 1.51m - 2.50m; Public Water - 160mm Diameter Depth: 0.00 m - 1.50 m.; Public Water - 160mm Diameter Depth exceeds 2.50m | 97,911.9 | 97,911.9 | A9280 | 1 | L01-03 |
| CON-LEG101-LR-10460 |  | Concrete encasement, pipe dia 110 mm [Local – 01 Segment-03] | 3d | 2026-02-10 A | 2026-04-01 A | CON-LEG101-LR-10360, CON-LEG101-EN-3450, CON-LEG101-PR-1430 | 100% |  | 2026-07-18 | 2026-07-21 |  |  | Public Water - Concrete encasement, pipe dia 110 mm [12.86]; Labor [300 h]; Carpenter [50 h]; Mason [100 h] | 4,501 | 4,501 | A9560 | 1 | L01-03 |
| CON-LEG101-LR-10560 |  | Granular Surround for Public Water Utility Distribution Piping [Local – 01 Segment-03] | 13d | 2026-02-18 A | 2026-04-02 A | CON-LEG101-LR-10460, CON-LEG101-EN-3450 | 100% |  | 2026-07-20 | 2026-08-04 |  |  | Public Water - 110mm Diameter Depth: 0.00 m - 1.50 m. [0.72]; Public Water - 110mm Diameter Depth: 1.51 m - 2.50 m. [0.47]; Public Water - 110mm Diameter Depth exceeds 2.50m [0.67]; Public Water - 200mm Diameter Depth: 0.00m -1.50m [24.47]; Loader [48 h]; Truck [414.77 h]; Driver [300 h]; Eq. Operator [50 h]; Public Water - 200mm Diameter Depth: 1.51m - 2.50m [10.95]; Public Water - 200mm Diameter Depth exceeds 2.50m [0.67]; Public Water - 160mm Diameter Depth: 1.51m - 2.50m; Public Water - 160mm Diameter Depth: 0.00 m - 1.50 m.; Public Water - 160mm Diameter Depth exceeds 2.50m | 10,881.8 | 10,881.8 | A9670 | 1 | L01-03 |
| CON-LEG101-LR-10660 |  | Installation of Micron Marker Magnetic Tape [Local – 01 Segment-03] | 2d | 2026-02-25 A | 2026-04-04 A | CON-LEG101-LR-10560 | 100% |  | 2026-07-14 | 2026-07-16 |  |  | Public Water - 110mm Diameter Depth: 0.00 m - 1.50 m. [0.72]; Public Water - 110mm Diameter Depth: 1.51 m - 2.50 m. [0.47]; Public Water - 110mm Diameter Depth exceeds 2.50m [0.67]; Public Water - 200mm Diameter Depth: 0.00m -1.50m [24.47]; Labor [200 h]; Public Water - 200mm Diameter Depth: 1.51m - 2.50m [10.95]; Public Water - 200mm Diameter Depth exceeds 2.50m [0.67]; Public Water - 160mm Diameter Depth: 1.51m - 2.50m; Public Water - 160mm Diameter Depth: 0.00 m - 1.50 m.; Public Water - 160mm Diameter Depth exceeds 2.50m | 10,881.8 | 10,881.8 | A9790 | 1 | L01-03 |
| CON-LEG101-LR-10760 |  | Backfilling to Subgrade Elevation [Local – 01 Segment-03] | 10d | 2026-02-26 A | 2026-04-05 A | CON-LEG101-LR-10660, CON-LEG101-EN-3440 | 100% |  | 2026-07-16 | 2026-07-28 |  |  | Public Water - 110mm Diameter Depth: 0.00 m - 1.50 m. [1.44]; Public Water - 110mm Diameter Depth: 1.51 m - 2.50 m. [0.94]; Public Water - 110mm Diameter Depth exceeds 2.50m [1.34]; Public Water - 200mm Diameter Depth: 0.00m -1.50m [48.93]; Excavator [48 h]; Water Tanker [48 h]; Road Roller [48 h]; Bucket [48 h]; Compactor [48 h]; Labor [200 h]; Driver [100 h]; Eq. Operator [200 h]; Public Water - 200mm Diameter Depth: 1.51m - 2.50m [21.89]; Public Water - 200mm Diameter Depth exceeds 2.50m [1.34]; Public Water - 160mm Diameter Depth: 1.51m - 2.50m; Public Water - 160mm Diameter Depth: 0.00 m - 1.50 m.; Public Water - 160mm Diameter Depth exceeds 2.50m | 21,757.9 | 21,757.9 | A9910 | 1 | L01-03 |
| CON-LEG101-LR-10360 |  | Testing for Public Water Utility Distribution Piping [Local – 01 Segment-03] | 13d | 2026-03-10 A | 2026-04-11 A | CON-LEG101-LR-10260 | 100% |  | 2026-07-02 | 2026-07-18 |  |  | Public Water - 110mm Diameter Depth: 0.00 m - 1.50 m. [1.44]; Public Water - 110mm Diameter Depth: 1.51 m - 2.50 m. [0.94]; Public Water - 110mm Diameter Depth exceeds 2.50m [1.34]; Public Water - 200mm Diameter Depth: 0.00m -1.50m [48.93]; Labor [300 h]; Skilled Labor [100 h]; Pipe Fitter [100 h]; Public Water - 200mm Diameter Depth: 1.51m - 2.50m [21.89]; Public Water - 200mm Diameter Depth exceeds 2.50m [1.34]; Public Water - 160mm Diameter Depth: 1.51m - 2.50m; Public Water - 160mm Diameter Depth: 0.00 m - 1.50 m.; Public Water - 160mm Diameter Depth exceeds 2.50m | 21,757.9 | 21,757.9 | A9410 | 1 | L01-03 |
|  | 1 | **Valves/Chamber** |  | 2026-04-01 | 2026-11-24 |  |  |  |  |  |  |  |  |  |  |  |  |  |
| CON-LEG101-LR-1130 |  | Installation of Wash-out Valves [Local – 01 Segment-03] | 8d | 2026-04-01 A | 2026-07-09 A | CON-LEG101-LR-1020, CON-LEG101-PR-1960 | 100% |  | 2026-10-08 | 2026-10-18 |  |  | Public Water - Wash out valve, on pipes with diameter 110-400 mm [1.34]; Excavator [48 h]; Labor [162.5 h]; Skilled Labor [50 h]; Eq. Operator [50 h]; Pipe Fitter [50 h] | 16,080 | 16,080 | A10300 | 1 | L01-03 |
| CON-LEG101-LR-1170 |  | Installation of Air Valves [Local – 01 Segment-03] | 8d | 2026-04-01 A | 2026-07-09 A | CON-LEG101-LR-1130, CON-LEG101-PR-1960 | 100% |  | 2026-10-18 | 2026-10-27 |  |  | Public Water - Air valve complete with gate valves, on pipes with diameter less than 315 mm. [0.67]; Excavator [48 h]; Labor [100 h]; Skilled Labor [50 h]; Eq. Operator [50 h]; Pipe Fitter [50 h] | 6,030 | 6,030 | A10390 | 1 | L01-03 |
| CON-LEG101-LR-1270 |  | Installation of Air Valve chambers [Local – 01 Segment-03] | 20d | 2026-04-01 A | 2026-11-24 | CON-LEG101-LR-10260, CON-LEG101-LR-1230, CON-LEG101-PR-1960 | 95% | 1d | 2026-08-25 | 2026-09-17 | 154.4d | 0d | Public Water - Air valve chamber; on less than 315 mm diameter pipeline [0.67]; Excavator [48 h]; Labor [200 h]; Skilled Labor [50 h]; Eq. Operator [50 h]; Pipe Fitter [50 h] | 26,800 | 25,460 | A10630 | 0.95 | L01-03 |
| CON-LEG101-LR-1020 |  | Installation of Gate (Sluice) valves (Direct buried) [Local – 01 Segment-03] | 8d | 2026-04-18 A | 2026-07-09 A | CON-LEG101-LR-1270, CON-LEG101-LR-10260, CON-LEG101-PR-1960, CON-LEG101-LR-15050 | 100% |  | 2026-07-09 | 2026-07-19 |  |  | Public Water - Gate valves, on pipe with diameter 110 mm [6.03]; Public Water - Gate valves, on pipe with diameter 200 mm [0.67]; Excavator [48 h]; Labor [200 h]; Skilled Labor [50 h]; Eq. Operator [50 h]; Pipe Fitter [50 h] | 23,450 | 23,450 | A10110 | 1 | L01-03 |
| CON-LEG101-LR-1230 |  | Installation of Wash out chambers [Local – 01 Segment-03] | 20d | 2026-04-27 A | 2026-11-23 | CON-LEG101-LR-10260, CON-LEG101-PR-1960, CON-LEG101-LR-10660 | 95% | 1d | 2026-06-13 | 2026-07-05 | 154.4d | 0d | Public Water - Wash out valve chamber; on 110-400 mm diameter pipeline [1.34]; Excavator [48 h]; Labor [200 h]; Skilled Labor [50 h]; Eq. Operator [50 h]; Pipe Fitter [50 h] | 53,600 | 50,920 | A10540 | 0.95 | L01-03 |
|  | 1 | **Electrical Works** |  | 2026-05-31 | 2026-09-17 |  |  |  |  |  |  |  |  |  |  |  |  |  |
|  | 3 | **Low Voltage** |  | 2026-05-31 | 2026-09-17 |  |  |  |  |  |  |  |  |  |  |  |  |  |
| CON-LEG101-LR-8000 |  | Installation of Low Voltage Cables Duct Banks [Local – 01 Segment-03] | 7d | 2026-05-31 A | 2026-06-04 A | CON-LEG101-LR-7800, CON-LEG101-PR-1320 | 100% |  | 2027-01-17 | 2027-01-24 |  |  | Truck [48 h]; Bucket [48 h]; Compactor [48 h]; Labor [50 h]; Driver [50 h]; Eq. Operator [100 h]; Carpenter [50 h]; Steel Fixer [50 h]; Mason [50 h]; Electrician [50 h]; Duct bank for (3) cables [5.03]; Duct bank for (1) cables [32.66]; Duct bank for (2) cables [12.56] | 16,961.5 | 16,961.5 | A5410 | 1 | L01-03 |
| CON-LEG101-LR-7800 |  | Excavation works for Low Voltage Cables [Local – 01 Segment-03] | 17d | 2026-08-12 A | 2026-09-15 A | CON-LEG101-LR-3520, CON-LEG101-LR-3430, CON-LEG101-LR-11060, CON-LEG101-LR-4220, CON-LEG101-LR-2100, CON-LEG101-LR-10760, CON-LEG101-LR-6900, CON-LEG101-EN-1680, CON-LEG101-EN-3440 | 100% |  | 2027-02-28 | 2027-03-18 |  |  | Excavator [144 h]; Truck [144 h]; Labor [600 h]; Driver [150 h]; Eq. Operator [250 h] |  |  | A5130 | 0.8 | L01-03 |
| CON-LEG101-LR-7900 |  | Installation of Low Voltage Cables [Local – 01 Segment-03] | 17d | 2026-08-12 A | 2026-09-16 A | CON-LEG101-LR-8000, CON-LEG101-LR-7800, CON-LEG101-PR-1900 | 100% |  | 2027-03-20 | 2027-04-07 |  |  | Excavator [144 h]; Truck [144 h]; Bucket [144 h]; Compactor [144 h]; Labor [300 h]; Skilled Labor [150 h]; Driver [150 h]; Eq. Operator [450 h]; Electrician [300 h]; Stranded armored Cables, Copper, 4C,50mm² XLPE /SWA/PVC [2]; Stranded armored Cables, Copper, 4C,35mm² XLPE/SWA /PVC [261.3]; Stranded armored Cables, Copper, 4xC16mm² XLPE /SWA/PVC [1708.5]; Single Core Cable, Copper 1C,16mm² CU/PVC For Earth [261.3]; Single Core Cable, Copper 1C,10mm² CU/PVC For Earth [1708.5]; Single Core Cable, Copper 1C,25mm² CU/PVC For Earth [2.01] | 155,591.1 | 155,591.1 | A5240 | 0.8 | L01-03 |
| CON-LEG101-LR-8780 |  | Installation of Earthing System [Local – 01 Segment-03] | 8d | 2026-08-12 A | 2026-09-17 A | CON-LEG101-PR-1320, CON-LEG101-LR-8000, CON-LEG101-PR-1930, CON-LEG101-LR-7900, CON-LEG101-PR-1480, CON-LEG101-PR-1310 | 100% |  | 2027-05-22 | 2027-05-31 |  |  | Earthing for Industrial switch poles and GSM towers [1.34]; Crane [48 h]; Labor [100 h]; Eq. Operator [50 h]; Electrician [100 h] | 2,010 | 2,010 | A6650 | 0.8 | L01-03 |

| ID | WBS | Activity | Duration | Start | Finish | Predecessors | Complete | Remaining | Planned start | Planned finish | Total float | Free float | Resources | Cost | Actual cost | Mapping Sheet Activity ID | % A | JEDDAH 1 - Area Name |
| --- | --- | --- | --- | --- | --- | --- | --- | --- | --- | --- | --- | --- | --- | --- | --- | --- | --- | --- |
|  | 10 | **Telecommunications** |  | 2026-05-31 | 2027-06-07 |  |  |  |  |  |  |  |  |  |  |  |  |  |
| CON-LEG101-LR-9250 |  | Installation of Concrete encased duct banks for for combined network of primary and secondary [Local – 01 Segment-03] | 9d | 2026-05-31 A | 2026-06-04 A | CON-LEG101-PR-3250, CON-LEG101-LR-9150, CON-LEG101-PR-1430 | 100% |  | 2027-03-13 | 2027-03-22 |  |  | Truck [48 h]; Bucket [48 h]; Compactor [48 h]; Labor [50 h]; Driver [50 h]; Eq. Operator [100 h]; Carpenter [50 h]; Steel Fixer [50 h]; Mason [50 h]; Electrician [50 h]; 6 x 32 mm HDPE sub-ducts [4.72] | 1,888 | 1,888 | A7390 | 1 | L01-03 |
| CON-LEG101-LR-9350 |  | Installation of Reinforced concrete manhole [Local – 01 Segment-03] | 17d | 2026-08-22 A | 2027-06-07 | CON-LEG101-LR-9250, CON-LEG101-PR-3260 | 70% | 5.1d | 2027-05-25 | 2027-06-13 | -3.5d | 16.8d | Truck [48 h]; Bucket [48 h]; Compactor [48 h]; Labor [50 h]; Driver [50 h]; Eq. Operator [100 h]; Carpenter [50 h]; Steel Fixer [50 h]; Mason [50 h]; Electrician [50 h]; Reinforced concrete manhole Type 1- 1200x1500x1200mm [2.01]; Reinforced concrete manhole Type 2- 1200x1500x1200mm [6.7] | 148,070 | 103,649 | A7540 | 0.3 | L01-03 |
| CON-LEG101-LR-8850 |  | Installation of Sand and soil encased duct banks for primary network [Local – 01 Segment-03] | 15d | 2026-09-05 A | 2027-05-27 | CON-LEG101-LR-7800 SS, CON-LEG101-EN-3280, CON-LEG101-EN-3440 | 90% | 1.5d | 2027-03-21 | 2027-04-06 | -3.5d | 0d | Truck [144 h]; Bucket [144 h]; Compactor [144 h]; Labor [150 h]; Driver [150 h]; Eq. Operator [457.14 h]; Carpenter [178.57 h]; Steel Fixer [150 h]; Mason [150 h]; Electrician [150 h]; 6-ways ducts, 50mm diameter, (HDPE TYPE) . [555.36]; 6-ways ducts, 50mm diameter, (HDPE TYPE) + 2 x 32 mm HDPE sub-ducts [259.39] | 121,846.7 | 109,662.03 | A6790 | 0.25 | L01-03 |
| CON-LEG101-LR-8950 |  | Installation of Concrete encased duct banks for primary network [Local – 01 Segment-03] | 11d | 2026-09-05 A | 2027-05-29 | CON-LEG101-PR-3180, CON-LEG101-PR-4020, CON-LEG101-LR-8850, CON-LEG101-PR-1430 | 90% | 1.1d | 2027-04-07 | 2027-04-19 | -3.5d | 0d | Truck [48 h]; Bucket [48 h]; Compactor [48 h]; Labor [50 h]; Driver [50 h]; Eq. Operator [100 h]; Carpenter [50 h]; Steel Fixer [50 h]; Mason [50 h]; Electrician [50 h]; 6-ways ducts, 50mm diameter, (HDPE TYPE) + 4 x 32 mm HDPE sub-ducts [218.89]; 6-ways ducts, 50mm diameter, (HDPE TYPE) . [85.53] | 55,411.75 | 49,870.58 | A6930 | 0.25 | L01-03 |
| CON-LEG101-LR-9050 |  | Installation of Sand encased duct banks for secondary network [Local – 01 Segment-03] | 14d | 2026-09-05 A | 2027-05-30 | CON-LEG101-LR-8950, CON-LEG101-EN-3440 | 90% | 1.4d | 2027-04-20 | 2027-05-05 | -3.5d | 0d | Truck [48 h]; Bucket [48 h]; Compactor [48 h]; Labor [50 h]; Driver [50 h]; Eq. Operator [100 h]; Carpenter [50 h]; Steel Fixer [50 h]; Mason [50 h]; Electrician [50 h]; 2 x 32 mm HDPE sub-ducts [87.23]; 6-ways ducts, 50mm diameter, (HDPE TYPE) + 6 x 32 mm HDPE sub-ducts [86.23] | 25,969 | 23,372.1 | A7090 | 0.25 | L01-03 |
| CON-LEG101-LR-9150 |  | Installation of Sand and soil encased duct banks, for combined network of primary and secondary [Local – 01 Segment-03 | 18d | 2026-09-05 A | 2027-06-01 | CON-LEG101-LR-9050, CON-LEG101-EN-3440, CON-LEG101-LR-7900 | 90% | 1.8d | 2027-05-06 | 2027-05-31 | -3.5d | 0d | Truck [192 h]; Bucket [192 h]; Compactor [192 h]; Labor [200 h]; Driver [200 h]; Eq. Operator [400 h]; Carpenter [200 h]; Steel Fixer [200 h]; Mason [200 h]; Electrician [200 h]; 4 x 32 mm HDPE sub-ducts [17.29]; 6-ways ducts, 50mm diameter, (HDPE TYPE) + 2 x 32 mm HDPE sub-ducts [6.13] | 6,216.5 | 5,594.85 | A7250 | 0.25 | L01-03 |
|  | 11 | **CCTV feeding system and GSM** |  | 2026-07-06 | 2026-09-01 |  |  |  |  |  |  |  |  |  |  |  |  |  |
| CON-LEG101-LR-8570 |  | Excavation works for Low Voltage Cables for CCTV feeding system and GSM [Local – 01 Segment-03] | 10d | 2026-07-06 A | 2026-09-01 A | CON-LEG101-LR-8850, CON-LEG101-EN-3290, CON-LEG101-EN-3440, CON-LEG101-LR-9050 | 100% |  | 2027-04-01 | 2027-04-12 |  |  | Excavator [48 h]; Truck [48 h]; Labor [200 h]; Driver [50 h]; Eq. Operator [50 h]; Duct bank for (1) cables [16.75] | 4,020 | 4,020 | A6350 | 1 | L01-03 |
| CON-LEG101-LR-8640 |  | Installation of Low Voltage Cables for CCTV feeding system and GSM [Local – 01 Segment-03] | 10d | 2026-07-06 A | 2026-09-01 A | CON-LEG101-LR-8570, CON-LEG101-PR-1900, CON-LEG101-LR-1170 | 100% |  | 2027-04-13 | 2027-04-24 |  |  | Excavator [48 h]; Truck [48 h]; Bucket [48 h]; Compactor [48 h]; Labor [100 h]; Skilled Labor [50 h]; Driver [50 h]; Eq. Operator [150 h]; Electrician [100 h]; Stranded Copper wire, , 3xC,2 mm² XLPE/PVC [11.71]; Stranded armored Cables, Copper, 4C,35mm² XLPE/SWA /PVC [41.54]; Stranded armored Cables, Copper, 4xC16mm² XLPE /SWA/PVC [157.45]; Single Core Cable, Copper 1C,16mm² CU/PVC For Earth [41.54]; Single Core Cable, Copper 1C,10mm² CU/PVC For Earth [157.45] | 18,625.25 | 18,625.25 | A6430 | 1 | L01-03 |
| CON-LEG101-LR-9710 |  | Installation of Outdoor PTZ IP66 [Local – 01 Segment-03] | 2d | 2026-07-06 A | 2026-09-01 A | CON-LEG101-LR-9630, CON-LEG101-PR-3650 | 100% |  | 2027-04-27 | 2027-04-28 |  |  | Truck [48 h]; Bucket [48 h]; Compactor [48 h]; Labor [50 h]; Driver [50 h]; Eq. Operator [100 h]; Carpenter [50 h]; Steel Fixer [50 h]; Mason [50 h]; Electrician [50 h]; "Outdoor PTZ with IR, HDTV 1080 and 31x optical, 12x digital, total 372x zoom, H264/265 with Motion JPEG. [0.67] | 23,450 | 23,450 | A8220 | 1 | L01-03 |
| CON-LEG101-LR-9960 |  | Installation of Short Range wireless point to point wireless bridge [Local – 01 Segment-03] | 7d | 2026-07-06 A | 2026-09-01 A | CON-LEG101-LR-9710, CON-LEG101-PR-3910 | 100% |  | 2027-04-29 | 2027-05-06 |  |  | Truck [48 h]; Bucket [48 h]; Compactor [48 h]; Labor [50 h]; Driver [50 h]; Eq. Operator [100 h]; Carpenter [50 h]; Steel Fixer [50 h]; Mason [50 h]; Electrician [50 h]; Short Range wireless point to point wireless bridge [1.34] | 17,420 | 17,420 | A8730 | 1 | L01-03 |
| CON-LEG101-LR-9630 |  | Installation of IP Outdoor CCTV POE Camera,5 MP, Metal Housing [Local – 01 Segment-03] | 5d | 2026-07-11 A | 2026-09-01 A | CON-LEG101-LR-8640, CON-LEG101-PR-3610 | 100% |  | 2027-04-18 | 2027-04-22 |  |  | Truck [48 h]; Bucket [48 h]; Compactor [48 h]; Labor [50 h]; Driver [50 h]; Eq. Operator [100 h]; Carpenter [50 h]; Steel Fixer [50 h]; Mason [50 h]; Electrician [50 h]; IP Outdoor CCTV POE Camera,5 MP, Metal Housing [2.68] | 13,400 | 13,400 | A8110 | 1 | L01-03 |
|  | 12 | **Earthing System** |  | 2027-06-27 | 2027-07-06 |  |  |  |  |  |  |  |  |  |  |  |  |  |
| CON-LEG101-LR-8300 |  | Installation of Earthing for Distribution panels,SL feeder pillars, KWH, Unit substations and RMU [Local – 01 Segment-03 | 8d | 2027-06-27 | 2027-07-06 | CON-LEG101-LR-9350, CON-LEG101-LR-8100, CON-LEG101-LR-8200, CON-LEG101-LR-8450, CON-LEG101-PR-1480, CON-LEG101-LR-9960, CON-LEG101-PR-1310 |  |  |  |  | -20.3d | 25.95d | Earthing for Distribution panels,SL feeder pillars, KWH, Unit substations and RMU; Crane [48 h]; Labor [100 h]; Eq. Operator [50 h]; Electrician [100 h] |  |  | A5830 |  | L01-03 |
|  | 9 | **Road Lighting** |  | 2026-03-15 | 2027-07-10 |  |  |  |  |  |  |  |  |  |  |  |  |  |
| CON-LEG101-LR-8100 |  | Installation of Lighting poles [Local – 01 Segment-03] | 17d | 2026-03-15 A | 2026-10-24 A | CON-LEG101-PR-1950, CON-LEG101-LR-7800, CON-LEG101-PR-1910 | 100% |  | 2026-12-07 | 2026-12-26 |  |  | Lighting poles with 1 arm, height of (8 ) meters, including the power distribution box, cables, and RCC foundation. [34.84]; Excavator [48 h]; Truck [48 h]; Crane [48 h]; Labor [150 h]; Driver [50 h]; Eq. Operator [100 h]; Carpenter [50 h]; Steel Fixer [50 h]; Mason [50 h]; Electrician [150 h] | 118,456 | 118,456 | A5550 | 0.9 | L01-03 |
| CON-LEG101-LR-8200 |  | Installation of Street Lighting Luminaire [Local – 01 Segment-03] | 6d | 2026-08-12 A | 2026-10-24 A | CON-LEG101-LR-8100, CON-LEG101-PR-1920 | 100% |  | 2027-04-01 | 2027-04-08 |  |  | Street Lighting( LED) Luminous efficacy ? 120Lum/w complete with control gear and lamp, (100) WATT. Max. [34.84]; Crane [48 h]; Labor [150 h]; Skilled Labor [100 h]; Eq. Operator [50 h]; Electrician [150 h] | 34,840 | 34,840 | A5690 | 0.9 | L01-03 |
| CON-LEG101-LR-8450 |  | Installation of Street Lighting feeder pillars / Lighting panels [Local – 01 Segment-03] | 7d | 2026-08-12 A | 2027-06-27 | CON-LEG101-LR-8100, CON-LEG101-PR-1940, CON-LEG101-PR-2550 | 90% | 0.7d | 2027-03-11 | 2027-03-20 | -96.9d | 0d | Street Lighting feeder pillars [1.34]; Crane [48 h]; Labor [100 h]; Eq. Operator [50 h]; Carpenter [100 h]; Electrician [200 h] | 46,900 | 42,210 | A6050 | 0.9 | L01-03 |
| CON-LEG101-LR-8350 |  | Installation of Earthing for Streetlighting feeders for every end pole circuits. [Local – 01 Segment-03] | 6d | 2026-09-05 A | 2027-07-10 | CON-LEG101-LR-8450, CON-LEG101-PR-1480, CON-LEG101-LR-8200, CON-LEG101-PR-1310, CON-LEG101-LR-8340 | 30% | 4.2d | 2027-05-27 | 2027-06-03 | -104d | 1d | Earthing for Streetlighting feeders for every end pole circuits.; Crane [48 h]; Labor [100 h]; Eq. Operator [50 h]; Carpenter [100 h]; Electrician [200 h] |  |  | A5910 | 0.3 | L01-03 |
|  | 2 | **Local – 02** |  | 2026-02-04 | 2027-07-18 |  |  |  |  |  |  |  |  |  |  |  |  |  |
|  | 5 | **TSE Network** |  | 2026-02-04 | 2026-11-24 |  |  |  |  |  |  |  |  |  |  |  |  |  |
|  | 2 | **Pipe Work** |  | 2026-02-04 | 2026-05-21 |  |  |  |  |  |  |  |  |  |  |  |  |  |
| CON-LEG101-LR-1330 |  | Excavation for TSE Network [Local – 02 ] | 13d | 2026-02-04 A | 2026-02-15 A | CON-LEG101-LR-3440, CON-LEG101-LR-3530, CON-LEG101-LR-11170, CON-LEG101-LR-4230, CON-LEG101-LR-2810, CON-LEG101-EN-1720, CON-LEG101-EN-1730, CON-LEG101-EN-1740, CON-LEG101-EN-1810 | 100% |  | 2026-05-21 | 2026-06-10 |  |  | Piping TSE Network - 200mm Diameter Depth: 2.51m - 3.50m [7.9]; Excavator [48 h]; Water Tanker [48 h]; Truck [96 h]; Crane [48 h]; Labor [200 h]; Driver [150 h]; Eq. Operator [100 h]; Piping TSE Network - 110mm Diameter Depth: 0.00 m - 1.50 m. [6.9]; Piping TSE Network - 110mm Diameter Depth: 1.51m - 2.50m [10.03]; Piping TSE Network - 200mm Diameter Depth: 0.00 m - 1.50 m. [35.2]; Piping TSE Network - 200mm Diameter Depth: 1.51m - 2.50m [67.8]; Piping TSE Network - 200mm Diameter Depth exceeds 3.50m; Piping TSE Network - 110mm Diameter Depth exceeds 2.50m; Piping TSE Network - 160mm Diameter Depth: 0.00 m - 1.50 m.; Piping TSE Network - 160mm Diameter Depth: 1.51m - 2.50m; Piping TSE Network - 160mm Diameter Depth exceeds 2.50m; Piping TSE Network - 250mm Diameter Depth: 0.00 m - 1.50 m.; Piping TSE Network - 250mm Diameter Depth: 1.51m - 2.50m; Piping TSE Network - 250mm Diameter Depth exceeds 2.50m | 44,252.1 | 44,252.1 | A10970 | 1 | L02 |
| CON-LEG101-LR-1440 |  | Granular bedding for TSE Network [Local – 02 ] | 10d | 2026-02-05 A | 2026-04-22 A | CON-LEG101-LR-1330 | 100% |  | 2026-06-10 | 2026-06-22 |  |  | Piping TSE Network - 200mm Diameter Depth: 2.51m - 3.50m [1.98]; Loader [48 h]; Truck [48 h]; Driver [50 h]; Eq. Operator [50 h]; Piping TSE Network - 110mm Diameter Depth: 0.00 m - 1.50 m. [1.73]; Piping TSE Network - 110mm Diameter Depth: 1.51m - 2.50m [2.54]; Piping TSE Network - 200mm Diameter Depth: 0.00 m - 1.50 m. [8.8]; Piping TSE Network - 200mm Diameter Depth: 1.51m - 2.50m [16.96]; Piping TSE Network - 200mm Diameter Depth exceeds 3.50m; Piping TSE Network - 110mm Diameter Depth exceeds 2.50m; Piping TSE Network - 160mm Diameter Depth: 0.00 m - 1.50 m.; Piping TSE Network - 160mm Diameter Depth: 1.51m - 2.50m; Piping TSE Network - 160mm Diameter Depth exceeds 2.50m; Piping TSE Network - 250mm Diameter Depth: 0.00 m - 1.50 m.; Piping TSE Network - 250mm Diameter Depth: 1.51m - 2.50m; Piping TSE Network - 250mm Diameter Depth exceeds 2.50m | 11,082 | 11,082 | A11090 | 1 | L02 |
| CON-LEG101-LR-1560 |  | Installation of Pipe for TSE Network [Local – 02 ] | 14d | 2026-02-05 A | 2026-04-23 A | CON-LEG101-PR-2590, CON-LEG101-LR-1440, CON-LEG101-PR-1690 | 100% |  | 2026-06-22 | 2026-07-08 |  |  | Piping TSE Network - 200mm Diameter Depth: 2.51m - 3.50m [17.79]; Excavator [48 h]; Crane [48 h]; Labor [150 h]; Skilled Labor [100 h]; Eq. Operator [100 h]; Plumber [50 h]; Pipe Fitter [50 h]; Piping TSE Network - 110mm Diameter Depth: 0.00 m - 1.50 m. [15.53]; Piping TSE Network - 110mm Diameter Depth: 1.51m - 2.50m [22.83]; Piping TSE Network - 200mm Diameter Depth: 0.00 m - 1.50 m. [79.19]; Piping TSE Network - 200mm Diameter Depth: 1.51m - 2.50m [152.64]; Piping TSE Network - 200mm Diameter Depth exceeds 3.50m; Piping TSE Network - 110mm Diameter Depth exceeds 2.50m; Piping TSE Network - 160mm Diameter Depth: 0.00 m - 1.50 m.; Piping TSE Network - 160mm Diameter Depth: 1.51m - 2.50m; Piping TSE Network - 160mm Diameter Depth exceeds 2.50m; Piping TSE Network - 250mm Diameter Depth: 0.00 m - 1.50 m.; Piping TSE Network - 250mm Diameter Depth: 1.51m - 2.50m; Piping TSE Network - 250mm Diameter Depth exceeds 2.50m | 99,684.3 | 99,684.3 | A11210 | 1 | L02 |
| CON-LEG101-LR-1880 |  | Granular Surround for TSE Network [Local – 02 ] | 10d | 2026-02-14 A | 2026-05-19 A | CON-LEG101-LR-1780, CON-LEG101-EN-3450 | 100% |  | 2026-06-23 | 2026-07-05 |  |  | Piping TSE Network - 200mm Diameter Depth: 2.51m - 3.50m [1.98]; Loader [48 h]; Truck [48 h]; Driver [50 h]; Eq. Operator [50 h]; Piping TSE Network - 110mm Diameter Depth: 0.00 m - 1.50 m. [1.73]; Piping TSE Network - 110mm Diameter Depth: 1.51m - 2.50m [2.54]; Piping TSE Network - 200mm Diameter Depth: 0.00 m - 1.50 m. [8.8]; Piping TSE Network - 200mm Diameter Depth: 1.51m - 2.50m [16.96]; Piping TSE Network - 200mm Diameter Depth exceeds 3.50m; Piping TSE Network - 110mm Diameter Depth exceeds 2.50m; Piping TSE Network - 160mm Diameter Depth: 0.00 m - 1.50 m.; Piping TSE Network - 160mm Diameter Depth: 1.51m - 2.50m; Piping TSE Network - 160mm Diameter Depth exceeds 2.50m; Piping TSE Network - 250mm Diameter Depth: 0.00 m - 1.50 m.; Piping TSE Network - 250mm Diameter Depth: 1.51m - 2.50m; Piping TSE Network - 250mm Diameter Depth exceeds 2.50m | 11,082 | 11,082 | A11580 | 1 | L02 |
| CON-LEG101-LR-1780 |  | Concrete encasement, pipe dia 110 mm [Local – 02 ] | 2d | 2026-03-15 A | 2026-05-18 A | CON-LEG101-LR-1670, CON-LEG101-EN-3450, CON-LEG101-PR-1430 | 100% |  | 2026-06-21 | 2026-06-23 |  |  | Labor [200 h]; Carpenter [50 h]; Mason [100 h]; Piping TSE Network - Concrete encasement, pipe dia 110 mm [4.56] | 1,596 | 1,596 | A11480 | 1 | L02 |
| CON-LEG101-LR-2000 |  | Installation of Micron Marker Magnetic Tape [Local – 02 ] | 4d | 2026-03-16 A | 2026-05-20 A | CON-LEG101-LR-1880 | 100% |  | 2026-06-25 | 2026-06-30 |  |  | Piping TSE Network - 200mm Diameter Depth exceeds 3.50m; Piping TSE Network - 110mm Diameter Depth exceeds 2.50m; Piping TSE Network - 160mm Diameter Depth: 0.00 m - 1.50 m.; Piping TSE Network - 160mm Diameter Depth: 1.51m - 2.50m; Piping TSE Network - 160mm Diameter Depth exceeds 2.50m; Piping TSE Network - 250mm Diameter Depth: 0.00 m - 1.50 m.; Piping TSE Network - 250mm Diameter Depth: 1.51m - 2.50m; Piping TSE Network - 250mm Diameter Depth exceeds 2.50m; Piping TSE Network - 200mm Diameter Depth: 2.51m - 3.50m [1.98]; Labor [100 h]; Piping TSE Network - 110mm Diameter Depth: 0.00 m - 1.50 m. [1.73]; Piping TSE Network - 110mm Diameter Depth: 1.51m - 2.50m [2.54]; Piping TSE Network - 200mm Diameter Depth: 0.00 m - 1.50 m. [8.8]; Piping TSE Network - 200mm Diameter Depth: 1.51m - 2.50m [16.96] | 11,082 | 11,082 | A11700 | 1 | L02 |
| CON-LEG101-LR-2110 |  | Backfilling to Subgrade Elevation [Local – 02 ] | 19d | 2026-03-17 A | 2026-05-21 A | CON-LEG101-LR-2000, CON-LEG101-EN-3440 | 100% |  | 2026-06-30 | 2026-07-22 |  |  | Piping TSE Network - 200mm Diameter Depth exceeds 3.50m; Piping TSE Network - 110mm Diameter Depth exceeds 2.50m; Piping TSE Network - 160mm Diameter Depth: 0.00 m - 1.50 m.; Piping TSE Network - 160mm Diameter Depth: 1.51m - 2.50m; Piping TSE Network - 160mm Diameter Depth exceeds 2.50m; Piping TSE Network - 250mm Diameter Depth: 0.00 m - 1.50 m.; Piping TSE Network - 250mm Diameter Depth: 1.51m - 2.50m; Piping TSE Network - 250mm Diameter Depth exceeds 2.50m; Piping TSE Network - 200mm Diameter Depth: 2.51m - 3.50m [3.95]; Excavator [23.58 h]; Water Tanker [23.58 h]; Road Roller [48 h]; Bucket [48 h]; Compactor [48 h]; Labor [100 h]; Driver [50 h]; Eq. Operator [200 h]; Piping TSE Network - 110mm Diameter Depth: 0.00 m - 1.50 m. [3.45]; Piping TSE Network - 110mm Diameter Depth: 1.51m - 2.50m [5.07]; Piping TSE Network - 200mm Diameter Depth: 0.00 m - 1.50 m. [17.6]; Piping TSE Network - 200mm Diameter Depth: 1.51m - 2.50m [33.92] | 22,147.5 | 22,147.5 | A11820 | 1 | L02 |
| CON-LEG101-LR-1670 |  | Testing for TSE Network [Local – 02 ] | 10d | 2026-03-18 A | 2026-05-21 A | CON-LEG101-LR-1560 | 100% |  | 2026-08-02 | 2026-08-12 |  |  | Piping TSE Network - 200mm Diameter Depth: 2.51m - 3.50m [3.95]; Labor [200 h]; Skilled Labor [100 h]; Pipe Fitter [100 h]; Piping TSE Network - 110mm Diameter Depth: 0.00 m - 1.50 m. [3.45]; Piping TSE Network - 110mm Diameter Depth: 1.51m - 2.50m [5.07]; Piping TSE Network - 200mm Diameter Depth: 0.00 m - 1.50 m. [17.6]; Piping TSE Network - 200mm Diameter Depth: 1.51m - 2.50m [33.92]; Piping TSE Network - 200mm Diameter Depth exceeds 3.50m; Piping TSE Network - 110mm Diameter Depth exceeds 2.50m; Piping TSE Network - 160mm Diameter Depth: 0.00 m - 1.50 m.; Piping TSE Network - 160mm Diameter Depth: 1.51m - 2.50m; Piping TSE Network - 160mm Diameter Depth exceeds 2.50m; Piping TSE Network - 250mm Diameter Depth: 0.00 m - 1.50 m.; Piping TSE Network - 250mm Diameter Depth: 1.51m - 2.50m; Piping TSE Network - 250mm Diameter Depth exceeds 2.50m | 22,147.5 | 22,147.5 | A11330 | 1 | L02 |

| ID | WBS | Activity | Duration | Start | Finish | Predecessors | Complete | Remaining | Planned start | Planned finish | Total float | Free float | Resources | Cost | Actual cost | Mapping Sheet Activity ID | % A | JEDDAH 1 - Area Name |
| --- | --- | --- | --- | --- | --- | --- | --- | --- | --- | --- | --- | --- | --- | --- | --- | --- | --- | --- |
|  | 1 | **Valves/Chamber** |  | 2026-04-29 | 2026-11-24 |  |  |  |  |  |  |  |  |  |  |  |  |  |
| CON-LEG101-LR-2220 |  | Installation of Gate (Sluice) valves (Direct buried) [Local – 02 ] | 13d | 2026-04-29 A | 2026-08-05 A | CON-LEG101-LR-2710, CON-LEG101-LR-1560, CON-LEG101-PR-1970 | 100% |  | 2026-07-09 | 2026-07-25 |  |  | Excavator [26 h]; Labor [100 h]; Skilled Labor [50 h]; Eq. Operator [50 h]; Pipe Fitter [50 h]; Piping TSE Network - Gate valves, on pipe with diameter 110 mm [7.37]; Piping TSE Network - Gate valves, on pipe with diameter 200 mm [2.68] | 43,550 | 43,550 | A12030 | 1 | L02 |
| CON-LEG101-LR-2410 |  | Installation of Wash out Valves [Local – 02 ] | 15d | 2026-04-29 A | 2026-11-24 | CON-LEG101-LR-2710, CON-LEG101-PR-1970 | 95% | 0.75d | 2026-07-09 | 2026-07-27 | 31.1d | 0d | Excavator [30 h]; Labor [100 h]; Skilled Labor [50 h]; Eq. Operator [50 h]; Pipe Fitter [50 h]; Piping TSE Network - Wash out valve, on pipes with diameter 110-400 mm [0.67] | 8,040 | 7,638 | A12360 | 0.95 | L02 |
| CON-LEG101-LR-2710 |  | Installation of Wash out chambers [Local – 02 ] | 21d | 2026-04-29 A | 2026-11-24 | CON-LEG101-LR-1560, CON-LEG101-PR-1970 | 95% | 1.05d | 2026-06-18 | 2026-07-13 | 31.1d | 0d | Excavator [22.29 h]; Labor [100 h]; Skilled Labor [50 h]; Eq. Operator [50 h]; Pipe Fitter [50 h]; Piping TSE Network - Wash out valve chamber; on 110-400 mm diameter pipeline [1.34] | 53,600 | 50,920 | A12830 | 0.95 | L02 |
| CON-LEG101-LR-2490 |  | Installation of Fire Hydrant [Local – 02 ] | 10d | 2026-05-20 A | 2026-10-04 A | CON-LEG101-LR-2410, CON-LEG101-PR-2470, CON-LEG101-LR-2480 SS | 100% |  | 2027-02-08 | 2027-02-25 |  |  | Piping TSE Network - 3-outlet fire hydrant (2 x 2.5 inch and 1 x 4.5 inch) in the form of a separate dry vacuum cylinder [6.7]; Excavator [48 h]; Labor [150 h]; Skilled Labor [50 h]; Eq. Operator [50 h]; Mason [50 h]; Pipe Fitter [50 h] | 60,300 | 60,300 | A12480 | 0.95 | L02 |
|  | 6 | **Public Water Utility Distribution** |  | 2026-02-04 | 2026-11-25 |  |  |  |  |  |  |  |  |  |  |  |  |  |
|  | 2 | **Pipe Work** |  | 2026-02-04 | 2026-05-18 |  |  |  |  |  |  |  |  |  |  |  |  |  |
| CON-LEG101-LR-10070 |  | Excavation for Public Water Utility Distribution Piping [Local – 02 ] | 12d | 2026-02-04 A | 2026-02-15 A | CON-LEG101-LR-4230, CON-LEG101-LR-11170, CON-LEG101-LR-3440, CON-LEG101-LR-3530, CON-LEG101-LR-1330, CON-LEG101-EN-1690, CON-LEG101-EN-1700, CON-LEG101-EN-1710, CON-LEG101-EN-3440 | 100% |  | 2026-06-10 | 2026-06-24 |  |  | Public Water - 110mm Diameter Depth: 0.00 m - 1.50 m. [86.55]; Public Water - 110mm Diameter Depth: 1.51 m - 2.50 m. [56.48]; Excavator [48 h]; Water Tanker [48 h]; Truck [96 h]; Crane [48 h]; Labor [200 h]; Driver [150 h]; Eq. Operator [100 h]; Public Water - 110mm Diameter Depth exceeds 2.50m; Public Water - 160mm Diameter Depth: 1.51m - 2.50m; Public Water - 200mm Diameter Depth: 0.00m -1.50m; Public Water - 160mm Diameter Depth: 0.00 m - 1.50 m.; Public Water - 160mm Diameter Depth exceeds 2.50m; Public Water - 200mm Diameter Depth: 1.51m - 2.50m; Public Water - 200mm Diameter Depth exceeds 2.50m | 30,828.6 | 30,828.6 | A9050 | 1 | L02 |
| CON-LEG101-LR-10170 |  | Granular bedding for Public Water Utility Distribution Piping [Local – 02 ] | 9d | 2026-02-05 A | 2026-04-22 A | CON-LEG101-LR-10070 | 100% |  | 2026-06-24 | 2026-07-05 |  |  | Public Water - 110mm Diameter Depth: 0.00 m - 1.50 m. [21.64]; Public Water - 110mm Diameter Depth: 1.51 m - 2.50 m. [14.12]; Loader [48 h]; Truck [48 h]; Driver [50 h]; Eq. Operator [50 h]; Public Water - 110mm Diameter Depth exceeds 2.50m; Public Water - 160mm Diameter Depth: 1.51m - 2.50m; Public Water - 200mm Diameter Depth: 0.00m -1.50m; Public Water - 160mm Diameter Depth: 0.00 m - 1.50 m.; Public Water - 160mm Diameter Depth exceeds 2.50m; Public Water - 200mm Diameter Depth: 1.51m - 2.50m; Public Water - 200mm Diameter Depth exceeds 2.50m | 7,707.6 | 7,707.6 | A9170 | 1 | L02 |
| CON-LEG101-LR-10270 |  | Installation of Pipe for Public Water Utility Distribution Piping [Local – 02 ] | 13d | 2026-02-05 A | 2026-04-23 A | CON-LEG101-PR-4010, CON-LEG101-LR-10170, CON-LEG101-PR-1660 | 100% |  | 2026-07-05 | 2026-07-20 |  |  | Public Water - 110mm Diameter Depth: 0.00 m - 1.50 m. [194.74]; Public Water - 110mm Diameter Depth: 1.51 m - 2.50 m. [127.09]; Excavator [32.77 h]; Crane [48 h]; Labor [150 h]; Skilled Labor [100 h]; Eq. Operator [100 h]; Plumber [50 h]; Pipe Fitter [50 h]; Public Water - 110mm Diameter Depth exceeds 2.50m; Public Water - 160mm Diameter Depth: 1.51m - 2.50m; Public Water - 200mm Diameter Depth: 0.00m -1.50m; Public Water - 160mm Diameter Depth: 0.00 m - 1.50 m.; Public Water - 160mm Diameter Depth exceeds 2.50m; Public Water - 200mm Diameter Depth: 1.51m - 2.50m; Public Water - 200mm Diameter Depth exceeds 2.50m | 69,367.5 | 69,367.5 | A9290 | 1 | L02 |
| CON-LEG101-LR-10570 |  | Granular Surround for Public Water Utility Distribution Piping [Local – 02 ] | 9d | 2026-02-14 A | 2026-05-16 A | CON-LEG101-LR-10470, CON-LEG101-EN-3450 | 100% |  | 2026-06-27 | 2026-07-07 |  |  | Public Water - 110mm Diameter Depth: 0.00 m - 1.50 m. [21.64]; Public Water - 110mm Diameter Depth: 1.51 m - 2.50 m. [14.12]; Loader [48 h]; Truck [48 h]; Driver [50 h]; Eq. Operator [50 h]; Public Water - 110mm Diameter Depth exceeds 2.50m; Public Water - 160mm Diameter Depth: 1.51m - 2.50m; Public Water - 200mm Diameter Depth: 0.00m -1.50m; Public Water - 160mm Diameter Depth: 0.00 m - 1.50 m.; Public Water - 160mm Diameter Depth exceeds 2.50m; Public Water - 200mm Diameter Depth: 1.51m - 2.50m; Public Water - 200mm Diameter Depth exceeds 2.50m | 7,707.6 | 7,707.6 | A9680 | 1 | L02 |
| CON-LEG101-LR-10470 |  | Concrete encasement, pipe dia 110 mm [Local – 02 ] | 2d | 2026-03-15 A | 2026-05-16 A | CON-LEG101-LR-10370, CON-LEG101-EN-3450, CON-LEG101-PR-1430 | 100% |  | 2026-06-21 | 2026-06-23 |  |  | Public Water - Concrete encasement, pipe dia 110 mm [12.86]; Labor [200 h]; Carpenter [50 h]; Mason [100 h] | 4,501 | 4,501 | A9570 | 1 | L02 |
| CON-LEG101-LR-10670 |  | Installation of Micron Marker Magnetic Tape [Local – 02 ] | 3d | 2026-03-16 A | 2026-05-17 A | CON-LEG101-LR-10570 | 100% |  | 2026-06-24 | 2026-06-28 |  |  | Public Water - 110mm Diameter Depth: 0.00 m - 1.50 m. [21.64]; Public Water - 110mm Diameter Depth: 1.51 m - 2.50 m. [14.12]; Labor [100 h]; Public Water - 110mm Diameter Depth exceeds 2.50m; Public Water - 160mm Diameter Depth: 1.51m - 2.50m; Public Water - 200mm Diameter Depth: 0.00m -1.50m; Public Water - 160mm Diameter Depth: 0.00 m - 1.50 m.; Public Water - 160mm Diameter Depth exceeds 2.50m; Public Water - 200mm Diameter Depth: 1.51m - 2.50m; Public Water - 200mm Diameter Depth exceeds 2.50m | 7,707.6 | 7,707.6 | A9800 | 1 | L02 |
| CON-LEG101-LR-10770 |  | Backfilling to Subgrade Elevation [Local – 02 ] | 8d | 2026-03-17 A | 2026-05-18 A | CON-LEG101-LR-10670, CON-LEG101-EN-3440 | 100% |  | 2026-06-28 | 2026-07-07 |  |  | Public Water - 110mm Diameter Depth: 0.00 m - 1.50 m. [43.28]; Public Water - 110mm Diameter Depth: 1.51 m - 2.50 m. [28.24]; Excavator [48 h]; Water Tanker [48 h]; Road Roller [48 h]; Bucket [48 h]; Compactor [48 h]; Labor [100 h]; Driver [50 h]; Eq. Operator [200 h]; Public Water - 110mm Diameter Depth exceeds 2.50m; Public Water - 160mm Diameter Depth: 1.51m - 2.50m; Public Water - 200mm Diameter Depth: 0.00m -1.50m; Public Water - 160mm Diameter Depth: 0.00 m - 1.50 m.; Public Water - 160mm Diameter Depth exceeds 2.50m; Public Water - 200mm Diameter Depth: 1.51m - 2.50m; Public Water - 200mm Diameter Depth exceeds 2.50m | 15,415.2 | 15,415.2 | A9920 | 1 | L02 |
| CON-LEG101-LR-10370 |  | Testing for Public Water Utility Distribution Piping [Local – 02 ] | 9d | 2026-05-13 A | 2026-05-14 A | CON-LEG101-LR-10270 | 100% |  | 2026-07-04 | 2026-07-14 |  |  | Public Water - 110mm Diameter Depth: 0.00 m - 1.50 m. [43.28]; Public Water - 110mm Diameter Depth: 1.51 m - 2.50 m. [28.24]; Labor [200 h]; Skilled Labor [100 h]; Pipe Fitter [100 h]; Public Water - 110mm Diameter Depth exceeds 2.50m; Public Water - 160mm Diameter Depth: 1.51m - 2.50m; Public Water - 200mm Diameter Depth: 0.00m -1.50m; Public Water - 160mm Diameter Depth: 0.00 m - 1.50 m.; Public Water - 160mm Diameter Depth exceeds 2.50m; Public Water - 200mm Diameter Depth: 1.51m - 2.50m; Public Water - 200mm Diameter Depth exceeds 2.50m | 15,415.2 | 15,415.2 | A9420 | 1 | L02 |
|  | 1 | **Valves/Chamber** |  | 2026-04-01 | 2026-11-25 |  |  |  |  |  |  |  |  |  |  |  |  |  |
| CON-LEG101-LR-15080 |  | Installation of Air Valve chambers [Local – 02 ] | 20d | 2026-04-01 A | 2026-11-24 | CON-LEG101-LR-15070 | 95% | 1d | 2026-07-09 | 2026-08-02 | 57.65d | 0d | Public Water - Air valve chamber; on less than 315 mm diameter pipeline [0.67]; Excavator [31.2 h]; Labor [100 h]; Skilled Labor [50 h]; Eq. Operator [50 h]; Pipe Fitter [50 h] | 26,800 | 25,460 | A10630 | 0.95 | L02 |
| CON-LEG101-LR-1030 |  | Installation of Gate (Sluice) valves (Direct buried) [Local – 02 ] | 7d | 2026-04-29 A | 2026-11-25 | CON-LEG101-LR-15100, CON-LEG101-LR-15080, CON-LEG101-LR-10270, CON-LEG101-PR-1960 | 95% | 0.35d | 2026-08-15 | 2026-08-23 | 57.65d | 1.55d | Public Water - Gate valves, on pipe with diameter 110 mm [6.03]; Public Water - Gate valves, on pipe with diameter 200 mm [0.67]; Excavator [48 h]; Labor [100 h]; Skilled Labor [50 h]; Eq. Operator [50 h]; Pipe Fitter [50 h] | 23,450 | 22,277.5 | A10120 | 0.95 | L02 |
| CON-LEG101-LR-15070 |  | Installation of Wash out chambers [Local – 02 ] | 20d | 2026-04-29 A | 2026-11-23 | CON-LEG101-LR-10270 | 95% | 1d | 2026-06-18 | 2026-07-12 | 31.9d | 0d | Public Water - Wash out valve chamber; on 110-400 mm diameter pipeline [0.67]; Excavator [20 h]; Labor [100 h]; Skilled Labor [50 h]; Eq. Operator [50 h]; Pipe Fitter [50 h] | 26,800 | 25,460 | A10540 | 0.95 | L02 |
| CON-LEG101-LR-15090 |  | Installation of Wash-out Valves [Local – 02 ] | 8d | 2026-04-29 A | 2026-08-05 A | CON-LEG101-LR-15070, CON-LEG101-LR-2410, CON-LEG101-LR-2220 | 100% |  | 2026-07-27 | 2026-08-05 |  |  | Public Water - Wash out valve, on pipes with diameter 110-400 mm [0.67]; Excavator [36 h]; Labor [100 h]; Skilled Labor [50 h]; Eq. Operator [50 h]; Pipe Fitter [50 h] | 8,040 | 8,040 | A10300 | 1 | L02 |
| CON-LEG101-LR-15100 |  | Installation of Air Valves [Local – 02 ] | 8d | 2026-04-29 A | 2026-08-06 A | CON-LEG101-LR-15090 | 100% |  | 2026-08-05 | 2026-08-15 |  |  | Public Water - Air valve complete with gate valves, on pipes with diameter less than 315 mm. [0.67]; Excavator [48 h]; Labor [100 h]; Skilled Labor [50 h]; Eq. Operator [50 h]; Pipe Fitter [50 h] | 6,030 | 6,030 | A10390 | 1 | L02 |
|  | 1 | **Electrical Works** |  | 2026-05-31 | 2027-07-18 |  |  |  |  |  |  |  |  |  |  |  |  |  |
|  | 3 | **Low Voltage** |  | 2026-05-31 | 2027-07-18 |  |  |  |  |  |  |  |  |  |  |  |  |  |
| CON-LEG101-LR-8010 |  | Installation of Low Voltage Cables Duct Banks [Local – 02 ] | 6d | 2026-05-31 A | 2026-06-11 A | CON-LEG101-LR-7810, CON-LEG101-PR-1320, CON-LEG101-LR-1030 | 100% |  | 2026-12-02 | 2026-12-08 |  |  | Truck [100 h]; Bucket [48 h]; Compactor [100 h]; Labor [50 h]; Driver [50 h]; Eq. Operator [100 h]; Carpenter [150 h]; Steel Fixer [50 h]; Mason [50 h]; Electrician [50 h]; Duct bank for (3) cables [3.35]; Duct bank for (1) cables [21.78]; Duct bank for (2) cables [8.38] | 11,309.5 | 11,309.5 | A5420 | 1 | L02 |
| CON-LEG101-LR-7810 |  | Excavation works for Low Voltage Cables [Local – 02 ] | 16d | 2026-07-21 A | 2026-07-25 A | CON-LEG101-LR-11170, CON-LEG101-LR-4230, CON-LEG101-LR-3440, CON-LEG101-LR-3530, CON-LEG101-LR-2110, CON-LEG101-LR-10770, CON-LEG101-LR-6910, CON-LEG101-EN-1680, CON-LEG101-EN-3440 | 100% |  | 2027-01-02 | 2027-01-19 |  |  | Excavator [144 h]; Truck [245 h]; Labor [600 h]; Driver [150 h]; Eq. Operator [150 h] |  |  | A5140 | 1 | L02 |
| CON-LEG101-LR-7910 |  | Installation of Low Voltage Cables [Local – 02 ] | 14d | 2026-07-24 A | 2026-08-01 A | CON-LEG101-LR-8010, CON-LEG101-LR-7810, CON-LEG101-PR-1900 | 100% |  | 2027-01-20 | 2027-02-04 |  |  | Excavator [144 h]; Truck [300 h]; Bucket [144 h]; Compactor [251.43 h]; Labor [300 h]; Skilled Labor [150 h]; Driver [150 h]; Eq. Operator [500 h]; Electrician [300 h]; Stranded armored Cables, Copper, 4C,50mm² XLPE /SWA/PVC [1.34]; Stranded armored Cables, Copper, 4C,35mm² XLPE/SWA /PVC [174.2]; Stranded armored Cables, Copper, 4xC16mm² XLPE /SWA/PVC [1139]; Single Core Cable, Copper 1C,16mm² CU/PVC For Earth [174.2]; Single Core Cable, Copper 1C,10mm² CU/PVC For Earth [1139]; Single Core Cable, Copper 1C,25mm² CU/PVC For Earth [1.34] | 103,729.4 | 103,729.4 | A5250 | 1 | L02 |
| CON-LEG101-LR-8490 |  | Installation of Low Voltage Distribution Panel [Local – 02 ] | 10d | 2027-06-27 | 2027-07-07 | CON-LEG101-LR-7910, CON-LEG101-LR-8010, CON-LEG101-PR-2550 |  |  |  |  | -102d | 0d | Main 100A MCCB with outgoing [1.34]; Crane [48 h]; Labor [100 h]; Eq. Operator [100 h]; Carpenter [100 h]; Electrician [200 h] | 26,800 |  | A6130 |  | L02 |
| CON-LEG101-LR-8540 |  | Installation of KWH Meters Walls [Local – 02 ] | 7d | 2027-07-08 | 2027-07-15 | CON-LEG101-LR-8490, CON-LEG101-PR-1930, CON-LEG101-LR-9960 |  |  |  |  | 30.6d | 0d | Supply and installation of KWH meter mounting frame including concrete block wall for KWH meter inculding foundations and finishings according to the standareds and specification of SEC [2.68]; Crane [48 h]; Labor [100 h]; Eq. Operator [50 h]; Carpenter [100 h]; Electrician [200 h] | 26,800 |  | A6220 |  | L02 |
| CON-LEG101-LR-8790 |  | Installation of Earthing System [Local – 02 ] | 2d | 2027-07-17 | 2027-07-18 | CON-LEG101-LR-8540, CON-LEG101-PR-1320, CON-LEG101-PR-1480, CON-LEG101-PR-1310 |  |  |  |  | 30.6d | 77d | Earthing for Industrial switch poles and GSM towers [0.67]; Crane [48 h]; Labor [100 h]; Eq. Operator [50 h]; Electrician [100 h] | 1,005 |  | A6660 |  | L02 |

| ID | WBS | Activity | Duration | Start | Finish | Predecessors | Complete | Remaining | Planned start | Planned finish | Total float | Free float | Resources | Cost | Actual cost | Mapping Sheet Activity ID | % A | JEDDAH 1 - Area Name |
| --- | --- | --- | --- | --- | --- | --- | --- | --- | --- | --- | --- | --- | --- | --- | --- | --- | --- | --- |
|  | 10 | **Telecommunications** |  | 2026-05-31 | 2026-10-08 |  |  |  |  |  |  |  |  |  |  |  |  |  |
| CON-LEG101-LR-8860 |  | Installation of Sand and soil encased duct banks for primary network [Local – 02 ] | 18d | 2026-05-31 A | 2026-07-01 A | CON-LEG101-LR-7810, CON-LEG101-EN-3280, CON-LEG101-EN-3440 | 100% |  | 2026-12-23 | 2027-01-12 |  |  | Truck [400 h]; Bucket [144 h]; Compactor [224 h]; Labor [150 h]; Driver [150 h]; Eq. Operator [700 h]; Carpenter [250 h]; Steel Fixer [150 h]; Mason [150 h]; Electrician [150 h]; 6-ways ducts, 50mm diameter, (HDPE TYPE) . [370.24]; 6-ways ducts, 50mm diameter, (HDPE TYPE) + 2 x 32 mm HDPE sub-ducts [172.93] | 81,231.7 | 81,231.7 | A6800 | 1 | L02 |
| CON-LEG101-LR-9260 |  | Installation of Concrete encased duct banks for for combined network of primary and secondary [Local – 02 ] | 7d | 2026-05-31 A | 2026-06-13 A | CON-LEG101-PR-3250, CON-LEG101-LR-9160, CON-LEG101-PR-1430 | 100% |  | 2027-03-03 | 2027-03-10 |  |  | Truck [48 h]; Bucket [48 h]; Compactor [48 h]; Labor [50 h]; Driver [50 h]; Eq. Operator [100 h]; Carpenter [50 h]; Steel Fixer [50 h]; Mason [50 h]; Electrician [50 h]; 6 x 32 mm HDPE sub-ducts [3.17] | 1,268 | 1,268 | A7400 | 1 | L02 |
| CON-LEG101-LR-9360 |  | Installation of Reinforced concrete manhole [Local – 02 ] | 21d | 2026-05-31 A | 2026-07-01 A | CON-LEG101-LR-9260, CON-LEG101-PR-3260 | 100% |  | 2027-03-11 | 2027-04-04 |  |  | Truck [48 h]; Bucket [48 h]; Compactor [48 h]; Labor [50 h]; Driver [50 h]; Eq. Operator [100 h]; Carpenter [50 h]; Steel Fixer [50 h]; Mason [50 h]; Electrician [50 h]; Reinforced concrete manhole Type 1- 1200x1500x1200mm [1.34]; Reinforced concrete manhole Type 2- 1200x1500x1200mm [5.36] | 113,900 | 113,900 | A7550 | 1 | L02 |
| CON-LEG101-LR-8960 |  | Installation of Concrete encased duct banks for primary network [Local – 02 ] | 8d | 2026-08-25 A | 2026-10-08 A | CON-LEG101-PR-3180, CON-LEG101-PR-4020, CON-LEG101-LR-8860, CON-LEG101-PR-1430 | 100% |  | 2027-02-06 | 2027-02-18 |  |  | Truck [100 h]; Bucket [48 h]; Compactor [48 h]; Labor [50 h]; Driver [50 h]; Eq. Operator [100 h]; Carpenter [50 h]; Steel Fixer [50 h]; Mason [50 h]; Electrician [50 h]; 6-ways ducts, 50mm diameter, (HDPE TYPE) + 4 x 32 mm HDPE sub-ducts [145.93]; 6-ways ducts, 50mm diameter, (HDPE TYPE) . [57.02] | 36,941.75 | 36,941.75 | A6940 | 0.9 | L02 |
| CON-LEG101-LR-9060 |  | Installation of Sand encased duct banks for secondary network [Local – 02 ] | 10d | 2026-08-25 A | 2026-10-08 A | CON-LEG101-LR-8960, CON-LEG101-EN-3440 | 100% |  | 2027-02-20 | 2027-03-03 |  |  | Truck [100 h]; Bucket [48 h]; Compactor [48 h]; Labor [50 h]; Driver [50 h]; Eq. Operator [100 h]; Carpenter [50 h]; Steel Fixer [50 h]; Mason [50 h]; Electrician [50 h]; 2 x 32 mm HDPE sub-ducts [58.16]; 6-ways ducts, 50mm diameter, (HDPE TYPE) + 6 x 32 mm HDPE sub-ducts [57.49] | 17,314 | 17,314 | A7100 | 0.9 | L02 |
| CON-LEG101-LR-9160 |  | Installation of Sand and soil encased duct banks, for combined network of primary and secondary [Local – 02 ] | 16d | 2026-08-25 A | 2026-10-08 A | CON-LEG101-LR-9060, CON-LEG101-EN-3440, CON-LEG101-LR-8490 | 100% |  | 2027-04-08 | 2027-04-26 |  |  | Truck [199 h]; Bucket [144 h]; Compactor [144 h]; Labor [150 h]; Driver [150 h]; Eq. Operator [406.25 h]; Carpenter [150 h]; Steel Fixer [150 h]; Mason [150 h]; Electrician [150 h]; 4 x 32 mm HDPE sub-ducts [11.52]; 6-ways ducts, 50mm diameter, (HDPE TYPE) + 2 x 32 mm HDPE sub-ducts [4.09] | 4,144.5 | 4,144.5 | A7260 | 0.9 | L02 |
|  | 11 | **CCTV feeding system and GSM** |  | 2026-06-01 | 2027-07-04 |  |  |  |  |  |  |  |  |  |  |  |  |  |
| CON-LEG101-LR-9890 |  | Installation of 25 Meters pole for CCTV Cameras [Local – 02 ] | 7d | 2026-06-01 A | 2026-07-16 A | CON-LEG101-LR-9800, CON-LEG101-PR-3870 | 100% |  | 2027-03-17 | 2027-03-24 |  |  | Truck [48 h]; Bucket [48 h]; Compactor [48 h]; Labor [50 h]; Driver [50 h]; Eq. Operator [100 h]; Carpenter [50 h]; Steel Fixer [50 h]; Mason [50 h]; Electrician [50 h]; "25 Meters pole for CCTV Cameras including : [0.67] | 87,100 | 87,100 | A8630 | 1 | L02 |
| CON-LEG101-LR-8580 |  | Excavation works for Low Voltage Cables for CCTV feeding system and GSM [Local – 02 ] | 10d | 2026-07-11 A | 2026-09-13 A | CON-LEG101-LR-8860, CON-LEG101-EN-3290, CON-LEG101-EN-3440 | 100% |  | 2027-01-09 | 2027-01-19 |  |  | Excavator [48 h]; Truck [48 h]; Labor [200 h]; Driver [50 h]; Eq. Operator [100 h]; Duct bank for (1) cables [33.5] | 8,040 | 8,040 | A6360 | 0.9 | L02 |
| CON-LEG101-LR-8650 |  | Installation of Low Voltage Cables for CCTV feeding system and GSM [Local – 02 ] | 7d | 2026-07-11 A | 2026-09-14 A | CON-LEG101-LR-8580, CON-LEG101-PR-1900 | 100% |  | 2027-01-24 | 2027-01-31 |  |  | Excavator [48 h]; Truck [48 h]; Bucket [48 h]; Compactor [48 h]; Labor [100 h]; Skilled Labor [50 h]; Driver [50 h]; Eq. Operator [300 h]; Electrician [100 h]; Stranded Copper wire, , 3xC,2 mm² XLPE/PVC [23.45]; Stranded armored Cables, Copper, 4C,35mm² XLPE/SWA /PVC [83.08]; Stranded armored Cables, Copper, 4xC16mm² XLPE /SWA/PVC [314.9]; Single Core Cable, Copper 1C,16mm² CU/PVC For Earth [83.08]; Single Core Cable, Copper 1C,10mm² CU/PVC For Earth [314.9] | 37,252 | 37,252 | A6440 | 0.9 | L02 |
| CON-LEG101-LR-9470 |  | Installation of 8POE ports Industrial Switches for remote poles [Local – 02 ] | 7d | 2026-07-11 A | 2026-09-14 A | CON-LEG101-LR-8650, CON-LEG101-PR-3410 | 100% |  | 2027-02-01 | 2027-02-08 |  |  | Truck [106.86 h]; Bucket [48 h]; Compactor [48 h]; Labor [50 h]; Driver [50 h]; Eq. Operator [200 h]; Carpenter [50 h]; Steel Fixer [50 h]; Mason [50 h]; Electrician [50 h]; 8POE ports Industrial Switches for remote poles |  |  | A7790 | 0.9 | L02 |
| CON-LEG101-LR-9570 |  | Installation of Server [Local – 02 ] | 7d | 2026-07-11 A | 2026-09-14 A | CON-LEG101-LR-9470, CON-LEG101-PR-3530 | 100% |  | 2027-02-14 | 2027-02-21 |  |  | Truck [48 h]; Bucket [48 h]; Compactor [48 h]; Labor [100 h]; Driver [150 h]; Eq. Operator [100 h]; Carpenter [92.86 h]; Steel Fixer [50 h]; Mason [50 h]; Electrician [50 h]; SERVER |  |  | A7990 | 0.9 | L02 |
| CON-LEG101-LR-9640 |  | Installation of IP Outdoor CCTV POE Camera,5 MP, Metal Housing [Local – 02 ] | 7d | 2026-07-11 A | 2026-09-14 A | CON-LEG101-LR-9570, CON-LEG101-PR-3610 | 100% |  | 2027-02-23 | 2027-03-02 |  |  | Truck [48 h]; Bucket [48 h]; Compactor [48 h]; Labor [50 h]; Driver [50 h]; Eq. Operator [100 h]; Carpenter [50 h]; Steel Fixer [50 h]; Mason [50 h]; Electrician [50 h]; IP Outdoor CCTV POE Camera,5 MP, Metal Housing [3.35] | 16,750 | 16,750 | A8120 | 0.9 | L02 |
| CON-LEG101-LR-9720 |  | Installation of Outdoor PTZ IP66 [Local – 02 ] | 2d | 2026-07-11 A | 2026-09-14 A | CON-LEG101-LR-9640, CON-LEG101-PR-3650 | 100% |  | 2027-03-03 | 2027-03-04 |  |  | Truck [48 h]; Bucket [48 h]; Compactor [48 h]; Labor [50 h]; Driver [50 h]; Eq. Operator [100 h]; Carpenter [50 h]; Steel Fixer [50 h]; Mason [50 h]; Electrician [50 h]; "Outdoor PTZ with IR, HDTV 1080 and 31x optical, 12x digital, total 372x zoom, H264/265 with Motion JPEG. [0.67] | 23,450 | 23,450 | A8230 | 0.9 | L02 |
| CON-LEG101-LR-9970 |  | Installation of Short Range wireless point to point wireless bridge [Local – 02 ] | 7d | 2026-07-11 A | 2026-09-14 A | CON-LEG101-LR-9890, CON-LEG101-PR-3910 | 100% |  | 2027-03-14 | 2027-03-21 |  |  | Truck [48 h]; Bucket [48 h]; Compactor [48 h]; Labor [50 h]; Driver [50 h]; Eq. Operator [100 h]; Carpenter [50 h]; Steel Fixer [50 h]; Mason [50 h]; Electrician [50 h]; Short Range wireless point to point wireless bridge [1.34] | 17,420 | 17,420 | A8740 | 0.9 | L02 |
| CON-LEG101-LR-9800 |  | Installation of LED Screen 43" (24/7 operation) with Ethernet decoders [Local – 02 ] | 7d | 2027-06-27 | 2027-07-04 | CON-LEG101-PR-3950, CON-LEG101-LR-9720, CON-LEG101-PR-3290 |  |  |  |  | -99d | 0d | Truck [48 h]; Bucket [48 h]; Compactor [48 h]; Labor [50 h]; Driver [50 h]; Eq. Operator [100 h]; Carpenter [50 h]; Steel Fixer [50 h]; Mason [50 h]; Electrician [50 h]; LED Screen 43" (24/7 operation) with Ethernet decoders [1.34] | 20,100 |  | A8370 |  | L02 |
|  | 12 | **Earthing System** |  | 2027-07-12 | 2027-07-18 |  |  |  |  |  |  |  |  |  |  |  |  |  |
| CON-LEG101-LR-8310 |  | Installation of Earthing for Distribution panels,SL feeder pillars, KWH, Unit substations and RMU [Local – 02 ] | 6d | 2027-07-12 | 2027-07-18 | CON-LEG101-LR-9360, CON-LEG101-LR-7510, CON-LEG101-LR-7430, CON-LEG101-LR-8460, CON-LEG101-LR-8110, CON-LEG101-PR-1480, CON-LEG101-LR-9970, CON-LEG101-PR-1310, CON-LEG101-LR-8360 SS |  |  |  |  | -105d | 0d | Earthing for Distribution panels,SL feeder pillars, KWH, Unit substations and RMU [5.36]; Crane [48 h]; Labor [100 h]; Eq. Operator [50 h]; Electrician [100 h] | 21,440 |  | A5840 |  | L02 |
|  | 9 | **Road Lighting** |  | 2026-03-15 | 2027-07-14 |  |  |  |  |  |  |  |  |  |  |  |  |  |
| CON-LEG101-LR-8110 |  | Installation of Lighting poles [Local – 02 ] | 7d | 2026-03-15 A | 2026-08-17 A | CON-LEG101-PR-1950, CON-LEG101-LR-7810, CON-LEG101-LR-8100 SS, CON-LEG101-PR-1910 | 100% |  | 2026-12-07 | 2026-12-14 |  |  | Lighting poles with 1 arm, height of (8 ) meters, including the power distribution box, cables, and RCC foundation. [34.84]; Excavator [48 h]; Truck [48 h]; Crane [48 h]; Labor [150 h]; Driver [50 h]; Eq. Operator [100 h]; Carpenter [50 h]; Steel Fixer [50 h]; Mason [50 h]; Electrician [150 h] | 118,456 | 118,456 | A5560 | 1 | L02 |
| CON-LEG101-LR-8210 |  | Installation of Street Lighting Luminaire [Local – 02 ] | 7d | 2026-07-05 A | 2026-08-17 A | CON-LEG101-LR-8110, CON-LEG101-PR-1920 | 100% |  | 2027-03-01 | 2027-03-09 |  |  | Street Lighting( LED) Luminous efficacy ? 120Lum/w complete with control gear and lamp, (100) WATT. Max. [34.84]; Crane [48 h]; Labor [150 h]; Skilled Labor [100 h]; Eq. Operator [50 h]; Electrician [150 h] | 34,840 | 34,840 | A5700 | 1 | L02 |
| CON-LEG101-LR-8460 |  | Installation of Street Lighting feeder pillars / Lighting panels [Local – 02 ] | 7d | 2026-07-08 A | 2026-10-28 A | CON-LEG101-LR-7510, CON-LEG101-PR-1940, CON-LEG101-PR-2550 | 100% |  | 2027-03-27 | 2027-04-04 |  |  | Street Lighting feeder pillars [1.34]; Crane [48 h]; Labor [100 h]; Eq. Operator [50 h]; Carpenter [100 h]; Electrician [200 h] | 46,900 | 46,900 | A6060 | 0.9 | L02 |
| CON-LEG101-LR-8360 |  | Installation of Earthing for Streetlighting feeders for every end pole circuits. [Local – 02 ] | 5d | 2026-08-08 A | 2027-07-14 | CON-LEG101-LR-7510, CON-LEG101-LR-7430, CON-LEG101-LR-8460, CON-LEG101-PR-1480, CON-LEG101-LR-8210, CON-LEG101-PR-1310, CON-LEG101-LR-8350 | 50% | 2.5d | 2027-06-01 | 2027-06-07 | -105d | 0d | Earthing for Streetlighting feeders for every end pole circuits. [8.04]; Crane [48 h]; Labor [100 h]; Eq. Operator [50 h]; Carpenter [100 h]; Electrician [200 h] | 16,080 | 8,040 | A5920 | 0.4 | L02 |
| CON-LEG101-LR-7430 |  | Installation of Unit Substation Including concrete foundations and fencing [Local – 02 ] | 7d | 2027-05-29 | 2027-06-05 | CON-LEG101-LR-8110, CON-LEG101-EN-3310, CON-LEG101-EN-3320, CON-LEG101-EN-3330, CON-LEG101-EN-3360, CON-LEG101-PR-1890 |  |  |  |  | -87d | 18d | Unit Substation 13.8/0.4 K V, 500kVA ,Including concrete foundations and fencing, According to the specifications and standards of SEC [0.67]; Excavator [48 h]; Truck [48 h]; Bucket [48 h]; Compactor [48 h]; Labor [100 h]; Skilled Labor [50 h]; Driver [100 h]; Eq. Operator [150 h]; Electrician [100 h] | 56,950 |  | A4570 |  | L02 |
| CON-LEG101-LR-7510 |  | Installation of Ring Main Unit RMU [Local – 02 ] | 13d | 2027-06-27 | 2027-07-11 | CON-LEG101-LR-8110, CON-LEG101-LR-7430, CON-LEG101-PR-2510, CON-LEG101-LR-8210 |  |  |  |  | -105d | 0d | Ring Main Unit RMU, 13.8KV, According to the specifications and standards of SEC [0.67]; Excavator [48 h]; Truck [48 h]; Bucket [48 h]; Compactor [48 h]; Labor [100 h]; Skilled Labor [50 h]; Driver [126.92 h]; Eq. Operator [150 h]; Electrician [100 h] | 50,250 |  | A4680 |  | L02 |

| ID | WBS | Activity | Duration | Start | Finish | Predecessors | Complete | Remaining | Planned start | Planned finish | Total float | Free float | Resources | Cost | Actual cost | Mapping Sheet Activity ID | % A | JEDDAH 1 - Area Name |
| --- | --- | --- | --- | --- | --- | --- | --- | --- | --- | --- | --- | --- | --- | --- | --- | --- | --- | --- |
|  | 3 | **Local – 03** |  | 2026-02-05 | 2027-08-26 |  |  |  |  |  |  |  |  |  |  |  |  |  |
|  | 5 | **TSE Network** |  | 2026-02-05 | 2026-11-26 |  |  |  |  |  |  |  |  |  |  |  |  |  |
|  | 2 | **Pipe Work** |  | 2026-02-05 | 2026-06-30 |  |  |  |  |  |  |  |  |  |  |  |  |  |
| CON-LEG101-LR-1340 |  | Excavation for TSE Network [Local – 03 ] | 6d | 2026-02-05 A | 2026-02-16 A | CON-LEG101-LR-11270, CON-LEG101-LR-4240, CON-LEG101-LR-3530, CON-LEG101-LR-3440, CON-LEG101-LR-3620, CON-LEG101-EN-1720, CON-LEG101-EN-1730, CON-LEG101-EN-1740, CON-LEG101-EN-1810 | 100% |  | 2026-05-18 | 2026-05-25 |  |  | Excavator [48 h]; Water Tanker [48 h]; Truck [96 h]; Crane [48 h]; Labor [300 h]; Driver [225 h]; Eq. Operator [150 h]; Piping TSE Network - 110mm Diameter Depth: 0.00 m - 1.50 m. [6.9]; Piping TSE Network - 110mm Diameter Depth: 1.51m - 2.50m [10.14]; Piping TSE Network - 250mm Diameter Depth: 0.00 m - 1.50 m. [2.68]; Piping TSE Network - 250mm Diameter Depth: 1.51m - 2.50m [22.75]; Piping TSE Network - 250mm Diameter Depth exceeds 2.50m [2.68]; Piping TSE Network - 200mm Diameter Depth: 2.51m - 3.50m; Piping TSE Network - 200mm Diameter Depth exceeds 3.50m; Piping TSE Network - 110mm Diameter Depth exceeds 2.50m; Piping TSE Network - 160mm Diameter Depth: 0.00 m - 1.50 m.; Piping TSE Network - 160mm Diameter Depth: 1.51m - 2.50m; Piping TSE Network - 160mm Diameter Depth exceeds 2.50m; Piping TSE Network - 200mm Diameter Depth: 0.00 m - 1.50 m.; Piping TSE Network - 200mm Diameter Depth: 1.51m - 2.50m | 17,797.8 | 17,797.8 | A10980 | 1 | L03 |
| CON-LEG101-LR-1460 |  | Granular bedding for TSE Network [Local – 03 ] | 7d | 2026-02-15 A | 2026-03-03 A | CON-LEG101-LR-1340 | 100% |  | 2026-05-25 | 2026-06-07 |  |  | Loader [48 h]; Truck [48 h]; Driver [50 h]; Eq. Operator [50 h]; Piping TSE Network - 110mm Diameter Depth: 0.00 m - 1.50 m. [1.73]; Piping TSE Network - 110mm Diameter Depth: 1.51m - 2.50m [2.54]; Piping TSE Network - 250mm Diameter Depth: 0.00 m - 1.50 m. [0.67]; Piping TSE Network - 250mm Diameter Depth: 1.51m - 2.50m [6.93]; Piping TSE Network - 250mm Diameter Depth exceeds 2.50m [0.67]; Piping TSE Network - 200mm Diameter Depth: 2.51m - 3.50m; Piping TSE Network - 200mm Diameter Depth exceeds 3.50m; Piping TSE Network - 110mm Diameter Depth exceeds 2.50m; Piping TSE Network - 160mm Diameter Depth: 0.00 m - 1.50 m.; Piping TSE Network - 160mm Diameter Depth: 1.51m - 2.50m; Piping TSE Network - 160mm Diameter Depth exceeds 2.50m; Piping TSE Network - 200mm Diameter Depth: 0.00 m - 1.50 m.; Piping TSE Network - 200mm Diameter Depth: 1.51m - 2.50m | 4,899 | 4,899 | A11100 | 1 | L03 |
| CON-LEG101-LR-1570 |  | Installation of Pipe for TSE Network [Local – 03 ] | 13d | 2026-02-18 A | 2026-04-15 A | CON-LEG101-PR-2590, CON-LEG101-LR-1460, CON-LEG101-PR-1690 | 100% |  | 2026-06-06 | 2026-06-21 |  |  | Excavator [48 h]; Crane [48 h]; Labor [150 h]; Skilled Labor [100 h]; Eq. Operator [100 h]; Plumber [50 h]; Pipe Fitter [50 h]; Piping TSE Network - 110mm Diameter Depth: 0.00 m - 1.50 m. [15.53]; Piping TSE Network - 110mm Diameter Depth: 1.51m - 2.50m [22.83]; Piping TSE Network - 250mm Diameter Depth: 0.00 m - 1.50 m. [6.03]; Piping TSE Network - 250mm Diameter Depth: 1.51m - 2.50m [62.41]; Piping TSE Network - 250mm Diameter Depth exceeds 2.50m [6.03]; Piping TSE Network - 200mm Diameter Depth: 2.51m - 3.50m; Piping TSE Network - 200mm Diameter Depth exceeds 3.50m; Piping TSE Network - 110mm Diameter Depth exceeds 2.50m; Piping TSE Network - 160mm Diameter Depth: 0.00 m - 1.50 m.; Piping TSE Network - 160mm Diameter Depth: 1.51m - 2.50m; Piping TSE Network - 160mm Diameter Depth exceeds 2.50m; Piping TSE Network - 200mm Diameter Depth: 0.00 m - 1.50 m.; Piping TSE Network - 200mm Diameter Depth: 1.51m - 2.50m | 44,090.1 | 44,090.1 | A11220 | 1 | L03 |
| CON-LEG101-LR-1890 |  | Granular Surround for TSE Network [Local – 03 ] | 7d | 2026-02-25 A | 2026-04-30 A | CON-LEG101-LR-1790, CON-LEG101-EN-3450 | 100% |  | 2026-06-18 | 2026-06-27 |  |  | Loader [48 h]; Truck [48 h]; Driver [50 h]; Eq. Operator [50 h]; Piping TSE Network - 110mm Diameter Depth: 0.00 m - 1.50 m. [1.73]; Piping TSE Network - 110mm Diameter Depth: 1.51m - 2.50m [2.54]; Piping TSE Network - 250mm Diameter Depth: 0.00 m - 1.50 m. [0.67]; Piping TSE Network - 250mm Diameter Depth: 1.51m - 2.50m [6.93]; Piping TSE Network - 250mm Diameter Depth exceeds 2.50m [0.67]; Piping TSE Network - 200mm Diameter Depth: 2.51m - 3.50m; Piping TSE Network - 200mm Diameter Depth exceeds 3.50m; Piping TSE Network - 110mm Diameter Depth exceeds 2.50m; Piping TSE Network - 160mm Diameter Depth: 0.00 m - 1.50 m.; Piping TSE Network - 160mm Diameter Depth: 1.51m - 2.50m; Piping TSE Network - 160mm Diameter Depth exceeds 2.50m; Piping TSE Network - 200mm Diameter Depth: 0.00 m - 1.50 m.; Piping TSE Network - 200mm Diameter Depth: 1.51m - 2.50m | 4,899 | 4,899 | A11590 | 1 | L03 |
| CON-LEG101-LR-1680 |  | Testing for TSE Network [Local – 03 ] | 7d | 2026-04-29 A | 2026-04-29 A | CON-LEG101-LR-1570 | 100% |  | 2026-06-29 | 2026-07-07 |  |  | Labor [200 h]; Skilled Labor [100 h]; Pipe Fitter [100 h]; Piping TSE Network - 110mm Diameter Depth: 0.00 m - 1.50 m. [3.45]; Piping TSE Network - 110mm Diameter Depth: 1.51m - 2.50m [5.07]; Piping TSE Network - 250mm Diameter Depth: 0.00 m - 1.50 m. [1.34]; Piping TSE Network - 250mm Diameter Depth: 1.51m - 2.50m [13.87]; Piping TSE Network - 250mm Diameter Depth exceeds 2.50m [1.34]; Piping TSE Network - 200mm Diameter Depth: 2.51m - 3.50m; Piping TSE Network - 200mm Diameter Depth exceeds 3.50m; Piping TSE Network - 110mm Diameter Depth exceeds 2.50m; Piping TSE Network - 160mm Diameter Depth: 0.00 m - 1.50 m.; Piping TSE Network - 160mm Diameter Depth: 1.51m - 2.50m; Piping TSE Network - 160mm Diameter Depth exceeds 2.50m; Piping TSE Network - 200mm Diameter Depth: 0.00 m - 1.50 m.; Piping TSE Network - 200mm Diameter Depth: 1.51m - 2.50m | 9,797.1 | 9,797.1 | A11340 | 1 | L03 |
| CON-LEG101-LR-1790 |  | Concrete encasement, pipe dia 110 mm [Local – 03 ] | 3d | 2026-04-30 A | 2026-04-30 A | CON-LEG101-LR-1680, CON-LEG101-EN-3450, CON-LEG101-PR-1430 | 100% |  | 2026-07-07 | 2026-07-11 |  |  | Labor [200 h]; Carpenter [50 h]; Mason [100 h]; Piping TSE Network - Concrete encasement, pipe dia 110 mm [4.56] | 1,596 | 1,596 | A11490 | 1 | L03 |
| CON-LEG101-LR-2010 |  | Installation of Micron Marker Magnetic Tape [Local – 03 ] | 3d | 2026-05-02 A | 2026-05-02 A | CON-LEG101-LR-1890 | 100% |  | 2026-07-12 | 2026-07-15 |  |  | Piping TSE Network - 200mm Diameter Depth: 2.51m - 3.50m; Piping TSE Network - 200mm Diameter Depth exceeds 3.50m; Piping TSE Network - 110mm Diameter Depth exceeds 2.50m; Piping TSE Network - 160mm Diameter Depth: 0.00 m - 1.50 m.; Piping TSE Network - 160mm Diameter Depth: 1.51m - 2.50m; Piping TSE Network - 160mm Diameter Depth exceeds 2.50m; Piping TSE Network - 200mm Diameter Depth: 0.00 m - 1.50 m.; Piping TSE Network - 200mm Diameter Depth: 1.51m - 2.50m; Labor [100 h]; Piping TSE Network - 110mm Diameter Depth: 0.00 m - 1.50 m. [1.73]; Piping TSE Network - 110mm Diameter Depth: 1.51m - 2.50m [2.54]; Piping TSE Network - 250mm Diameter Depth: 0.00 m - 1.50 m. [0.67]; Piping TSE Network - 250mm Diameter Depth: 1.51m - 2.50m [6.93]; Piping TSE Network - 250mm Diameter Depth exceeds 2.50m [0.67] | 4,899 | 4,899 | A11710 | 1 | L03 |
| CON-LEG101-LR-2120 |  | Backfilling to Subgrade Elevation [Local – 03 ] | 6d | 2026-05-03 A | 2026-06-30 A | CON-LEG101-LR-2010, CON-LEG101-EN-3440 | 100% |  | 2026-07-15 | 2026-07-22 |  |  | Piping TSE Network - 200mm Diameter Depth: 2.51m - 3.50m; Piping TSE Network - 200mm Diameter Depth exceeds 3.50m; Piping TSE Network - 110mm Diameter Depth exceeds 2.50m; Piping TSE Network - 160mm Diameter Depth: 0.00 m - 1.50 m.; Piping TSE Network - 160mm Diameter Depth: 1.51m - 2.50m; Piping TSE Network - 160mm Diameter Depth exceeds 2.50m; Piping TSE Network - 200mm Diameter Depth: 0.00 m - 1.50 m.; Piping TSE Network - 200mm Diameter Depth: 1.51m - 2.50m; Excavator [24 h]; Water Tanker [24 h]; Road Roller [48 h]; Bucket [48 h]; Compactor [48 h]; Labor [100 h]; Driver [50 h]; Eq. Operator [200 h]; Piping TSE Network - 110mm Diameter Depth: 0.00 m - 1.50 m. [3.45]; Piping TSE Network - 110mm Diameter Depth: 1.51m - 2.50m [5.07]; Piping TSE Network - 250mm Diameter Depth: 0.00 m - 1.50 m. [1.34]; Piping TSE Network - 250mm Diameter Depth: 1.51m - 2.50m [13.87]; Piping TSE Network - 250mm Diameter Depth exceeds 2.50m [1.34] | 9,797.1 | 9,797.1 | A11830 | 1 | L03 |
|  | 1 | **Valves/Chamber** |  | 2026-04-15 | 2026-11-26 |  |  |  |  |  |  |  |  |  |  |  |  |  |
| CON-LEG101-LR-2230 |  | Installation of Gate (Sluice) valves (Direct buried) [Local – 03 ] | 15d | 2026-04-15 A | 2026-08-05 A | CON-LEG101-LR-2640, CON-LEG101-LR-2720, CON-LEG101-LR-1570, CON-LEG101-PR-1970, CON-LEG101-LR-1030 | 100% |  | 2026-09-12 | 2026-09-30 |  |  | Excavator [48 h]; Labor [200 h]; Skilled Labor [50 h]; Eq. Operator [50 h]; Pipe Fitter [50 h]; Piping TSE Network - Gate valves, on pipe with diameter 110 mm [4.02] | 12,060 | 12,060 | A12040 | 1 | L03 |
| CON-LEG101-LR-2340 |  | Installation of Wash-out Valves [Local – 03 ] | 15d | 2026-04-15 A | 2026-08-05 A | CON-LEG101-LR-2230, CON-LEG101-PR-1970 | 100% |  | 2026-09-30 | 2026-10-18 |  |  | Excavator [48 h]; Labor [200 h]; Skilled Labor [50 h]; Eq. Operator [50 h]; Pipe Fitter [50 h]; Piping TSE Network - Wash out valve, on pipes with diameter 110-400 mm [0.67] | 8,040 | 8,040 | A12250 | 1 | L03 |
| CON-LEG101-LR-2420 |  | Installation of Air Valves [Local – 03 ] | 15d | 2026-04-15 A | 2026-08-05 A | CON-LEG101-LR-2340, CON-LEG101-PR-1970 | 100% |  | 2026-10-18 | 2026-11-04 |  |  | Excavator [48 h]; Labor [200 h]; Skilled Labor [50 h]; Eq. Operator [50 h]; Pipe Fitter [50 h]; Piping TSE Network - Air valve complete with gate valves, on pipes with diameter less than 315 mm. [1.34] | 12,060 | 12,060 | A12370 | 1 | L03 |
| CON-LEG101-LR-2500 |  | Installation of Fire Hydrant [Local – 03 ] | 15d | 2026-04-15 A | 2026-10-05 A | CON-LEG101-LR-2120, CON-LEG101-LR-2420, CON-LEG101-PR-2470, CON-LEG101-LR-2490 SS | 100% |  | 2027-02-07 | 2027-03-02 |  |  | Piping TSE Network - 3-outlet fire hydrant (2 x 2.5 inch and 1 x 4.5 inch) in the form of a separate dry vacuum cylinder [3.35]; Excavator [48 h]; Labor [150 h]; Skilled Labor [50 h]; Eq. Operator [50 h]; Mason [50 h]; Pipe Fitter [50 h] | 30,150 | 30,150 | A12490 | 0.9 | L03 |
| CON-LEG101-LR-2720 |  | Installation of Air Valve chambers [Local – 03 ] | 21d | 2026-04-15 A | 2026-11-26 | CON-LEG101-LR-2640, CON-LEG101-PR-1970 | 95% | 1.05d | 2026-09-06 | 2026-10-01 | 31.1d | 0d | Excavator [48 h]; Labor [100 h]; Skilled Labor [50 h]; Eq. Operator [50 h]; Pipe Fitter [50 h]; Piping TSE Network - Air valve chamber; on less than 315 mm diameter pipeline [1.34] | 53,600 | 50,920 | A12840 | 0.9 | L03 |
| CON-LEG101-LR-2640 |  | Installation of Wash out chambers [Local – 03 ] | 21d | 2026-04-29 A | 2026-11-25 | CON-LEG101-LR-1570, CON-LEG101-PR-1970, CON-LEG101-LR-2710, CON-LEG101-LR-15090 | 95% | 1.05d | 2026-08-09 | 2026-09-02 | 31.1d | 0d | Excavator [21 h]; Labor [100 h]; Skilled Labor [50 h]; Eq. Operator [50 h]; Pipe Fitter [50 h]; Piping TSE Network - Wash out valve chamber; on 110-400 mm diameter pipeline [0.67] | 26,800 | 25,460 | A12720 | 0.9 | L03 |
|  | 6 | **Public Water Utility Distribution** |  | 2026-02-05 | 2026-11-28 |  |  |  |  |  |  |  |  |  |  |  |  |  |
|  | 2 | **Pipe Work** |  | 2026-02-05 | 2026-06-30 |  |  |  |  |  |  |  |  |  |  |  |  |  |
| CON-LEG101-LR-10080 |  | Excavation for Public Water Utility Distribution Piping [Local – 03 ] | 10d | 2026-02-05 A | 2026-02-16 A | CON-LEG101-LR-3530, CON-LEG101-LR-3440, CON-LEG101-LR-1340, CON-LEG101-EN-1690, CON-LEG101-EN-1700, CON-LEG101-EN-1710, CON-LEG101-EN-3440, CON-LEG101-LR-1890 | 100% |  | 2026-07-12 | 2026-07-23 |  |  | Public Water - 110mm Diameter Depth: 0.00 m - 1.50 m. [28.85]; Public Water - 110mm Diameter Depth: 1.51 m - 2.50 m. [18.83]; Public Water - 160mm Diameter Depth: 1.51m - 2.50m [8.5]; Excavator [20 h]; Water Tanker [30 h]; Truck [96 h]; Crane [48 h]; Labor [200 h]; Driver [150 h]; Eq. Operator [100 h]; Public Water - 160mm Diameter Depth: 0.00 m - 1.50 m. [6.86]; Public Water - 160mm Diameter Depth exceeds 2.50m [2.68]; Public Water - 110mm Diameter Depth exceeds 2.50m; Public Water - 200mm Diameter Depth: 0.00m -1.50m; Public Water - 200mm Diameter Depth: 1.51m - 2.50m; Public Water - 200mm Diameter Depth exceeds 2.50m | 16,748.3 | 16,748.3 | A9060 | 1 | L03 |
| CON-LEG101-LR-10180 |  | Granular bedding for Public Water Utility Distribution Piping [Local – 03 ] | 7d | 2026-02-15 A | 2026-03-03 A | CON-LEG101-LR-10080 | 100% |  | 2026-07-18 | 2026-07-26 |  |  | Public Water - 110mm Diameter Depth: 0.00 m - 1.50 m. [7.22]; Public Water - 110mm Diameter Depth: 1.51 m - 2.50 m. [4.75]; Public Water - 160mm Diameter Depth: 1.51m - 2.50m [2.12]; Loader [48 h]; Truck [48 h]; Driver [50 h]; Eq. Operator [50 h]; Public Water - 160mm Diameter Depth: 0.00 m - 1.50 m. [1.72]; Public Water - 160mm Diameter Depth exceeds 2.50m [0.67]; Public Water - 110mm Diameter Depth exceeds 2.50m; Public Water - 200mm Diameter Depth: 0.00m -1.50m; Public Water - 200mm Diameter Depth: 1.51m - 2.50m; Public Water - 200mm Diameter Depth exceeds 2.50m | 4,199.5 | 4,199.5 | A9180 | 1 | L03 |
| CON-LEG101-LR-10280 |  | Installation of Pipe for Public Water Utility Distribution Piping [Local – 03 ] | 12d | 2026-02-18 A | 2026-03-14 A | CON-LEG101-PR-4010, CON-LEG101-LR-10180, CON-LEG101-PR-1660 | 100% |  | 2026-07-15 | 2026-07-29 |  |  | Public Water - 110mm Diameter Depth: 0.00 m - 1.50 m. [64.92]; Public Water - 110mm Diameter Depth: 1.51 m - 2.50 m. [42.36]; Public Water - 160mm Diameter Depth: 1.51m - 2.50m [19.13]; Excavator [48 h]; Crane [48 h]; Labor [150 h]; Skilled Labor [100 h]; Eq. Operator [100 h]; Plumber [50 h]; Pipe Fitter [50 h]; Public Water - 160mm Diameter Depth: 0.00 m - 1.50 m. [15.44]; Public Water - 160mm Diameter Depth exceeds 2.50m [6.03]; Public Water - 110mm Diameter Depth exceeds 2.50m; Public Water - 200mm Diameter Depth: 0.00m -1.50m; Public Water - 200mm Diameter Depth: 1.51m - 2.50m; Public Water - 200mm Diameter Depth exceeds 2.50m | 37,685.6 | 37,685.6 | A9300 | 1 | L03 |
| CON-LEG101-LR-10580 |  | Granular Surround for Public Water Utility Distribution Piping [Local – 03 ] | 7d | 2026-02-25 A | 2026-04-30 A | CON-LEG101-LR-10480, CON-LEG101-EN-3450 | 100% |  | 2026-07-18 | 2026-07-26 |  |  | Public Water - 110mm Diameter Depth: 0.00 m - 1.50 m. [7.22]; Public Water - 110mm Diameter Depth: 1.51 m - 2.50 m. [4.71]; Public Water - 160mm Diameter Depth: 1.51m - 2.50m [2.12]; Loader [48 h]; Truck [434.29 h]; Driver [92.86 h]; Eq. Operator [50 h]; Public Water - 160mm Diameter Depth: 0.00 m - 1.50 m. [1.72]; Public Water - 160mm Diameter Depth exceeds 2.50m [0.67]; Public Water - 110mm Diameter Depth exceeds 2.50m; Public Water - 200mm Diameter Depth: 0.00m -1.50m; Public Water - 200mm Diameter Depth: 1.51m - 2.50m; Public Water - 200mm Diameter Depth exceeds 2.50m | 4,188.7 | 4,188.7 | A9690 | 1 | L03 |
| CON-LEG101-LR-10380 |  | Testing for Public Water Utility Distribution Piping [Local – 03 ] | 7d | 2026-04-29 A | 2026-04-29 A | CON-LEG101-LR-10280 | 100% |  | 2026-07-12 | 2026-07-20 |  |  | Public Water - 110mm Diameter Depth: 0.00 m - 1.50 m. [14.43]; Public Water - 110mm Diameter Depth: 1.51 m - 2.50 m. [9.41]; Public Water - 160mm Diameter Depth: 1.51m - 2.50m [4.25]; Labor [200 h]; Skilled Labor [100 h]; Pipe Fitter [100 h]; Public Water - 160mm Diameter Depth: 0.00 m - 1.50 m. [3.43]; Public Water - 160mm Diameter Depth exceeds 2.50m [1.34]; Public Water - 110mm Diameter Depth exceeds 2.50m; Public Water - 200mm Diameter Depth: 0.00m -1.50m; Public Water - 200mm Diameter Depth: 1.51m - 2.50m; Public Water - 200mm Diameter Depth exceeds 2.50m | 8,373.7 | 8,373.7 | A9430 | 1 | L03 |
| CON-LEG101-LR-10480 |  | Concrete encasement, pipe dia 110 mm [Local – 03 ] | 3d | 2026-04-30 A | 2026-04-30 A | CON-LEG101-LR-10380, CON-LEG101-EN-3450, CON-LEG101-PR-1430 | 100% |  | 2026-07-20 | 2026-07-23 |  |  | Public Water - Concrete encasement, pipe dia 110 mm [12.86]; Labor [200 h]; Carpenter [50 h]; Mason [100 h] | 4,501 | 4,501 | A9580 | 1 | L03 |
| CON-LEG101-LR-10680 |  | Installation of Micron Marker Magnetic Tape [Local – 03 ] | 3d | 2026-05-02 A | 2026-06-25 A | CON-LEG101-LR-10580 | 100% |  | 2026-07-25 | 2026-07-27 |  |  | Public Water - 110mm Diameter Depth: 0.00 m - 1.50 m. [7.22]; Public Water - 110mm Diameter Depth: 1.51 m - 2.50 m. [4.71]; Public Water - 160mm Diameter Depth: 1.51m - 2.50m [2.12]; Labor [200 h]; Public Water - 160mm Diameter Depth: 0.00 m - 1.50 m. [1.72]; Public Water - 160mm Diameter Depth exceeds 2.50m [0.67]; Public Water - 110mm Diameter Depth exceeds 2.50m; Public Water - 200mm Diameter Depth: 0.00m -1.50m; Public Water - 200mm Diameter Depth: 1.51m - 2.50m; Public Water - 200mm Diameter Depth exceeds 2.50m | 4,188.7 | 4,188.7 | A9810 | 1 | L03 |
| CON-LEG101-LR-10780 |  | Backfilling to Subgrade Elevation [Local – 03 ] | 6d | 2026-05-03 A | 2026-06-30 A | CON-LEG101-LR-10680, CON-LEG101-EN-3440 | 100% |  | 2026-07-28 | 2026-08-03 |  |  | Public Water - 110mm Diameter Depth: 0.00 m - 1.50 m. [14.43]; Public Water - 110mm Diameter Depth: 1.51 m - 2.50 m. [9.41]; Public Water - 160mm Diameter Depth: 1.51m - 2.50m [4.25]; Excavator [48 h]; Water Tanker [48 h]; Road Roller [48 h]; Bucket [100 h]; Compactor [100 h]; Labor [200 h]; Driver [100 h]; Eq. Operator [200 h]; Public Water - 160mm Diameter Depth: 0.00 m - 1.50 m. [3.43]; Public Water - 160mm Diameter Depth exceeds 2.50m [1.34]; Public Water - 110mm Diameter Depth exceeds 2.50m; Public Water - 200mm Diameter Depth: 0.00m -1.50m; Public Water - 200mm Diameter Depth: 1.51m - 2.50m; Public Water - 200mm Diameter Depth exceeds 2.50m | 8,366.5 | 8,373.7 | A9930 | 1 | L03 |

| ID | WBS | Activity | Duration | Start | Finish | Predecessors | Complete | Remaining | Planned start | Planned finish | Total float | Free float | Resources | Cost | Actual cost | Mapping Sheet Activity ID | % A | JEDDAH 1 - Area Name |
| --- | --- | --- | --- | --- | --- | --- | --- | --- | --- | --- | --- | --- | --- | --- | --- | --- | --- | --- |
|  | 1 | **Valves/Chamber** |  | 2026-04-15 | 2026-11-28 |  |  |  |  |  |  |  |  |  |  |  |  |  |
| CON-LEG101-LR-1040 |  | Installation of Gate (Sluice) valves (Direct buried) [Local – 03 ] | 8d | 2026-04-15 A | 2026-08-05 A | CON-LEG101-LR-10780, CON-LEG101-LR-15110, CON-LEG101-LR-15120, CON-LEG101-LR-10280, CON-LEG101-PR-1960 | 100% |  | 2026-10-08 | 2026-10-18 |  |  | Public Water - Gate valves, on pipe with diameter 110 mm [6.03]; Public Water - Gate valves, on pipe with diameter 160 mm [3.35]; Public Water - Gate valves, on pipe with diameter 200 mm [0.67]; Excavator [48 h]; Labor [200 h]; Skilled Labor [50 h]; Eq. Operator [50 h]; Pipe Fitter [50 h] | 38,525 | 38,525 | A10130 | 1 | L03 |
| CON-LEG101-LR-15110 |  | Installation of Air Valve chambers [Local – 03 ] | 20d | 2026-04-15 A | 2026-11-28 | CON-LEG101-LR-10280, CON-LEG101-LR-2720, CON-LEG101-LR-10780 | 95% | 1d | 2026-10-01 | 2026-10-25 | 31.1d | 0d | Public Water - Air valve chamber; on less than 315 mm diameter pipeline [0.67]; Excavator [48 h]; Labor [400 h]; Skilled Labor [50 h]; Eq. Operator [50 h]; Pipe Fitter [50 h] | 26,800 | 25,460 | A10630 | 0.9 | L03 |
| CON-LEG101-LR-15120 |  | Installation of Air Valves [Local – 03 ] | 8d | 2026-04-15 A | 2026-08-05 A | CON-LEG101-LR-15110 | 100% |  | 2026-09-29 | 2026-10-08 |  |  | Public Water - Air valve complete with gate valves, on pipes with diameter less than 315 mm. [0.67]; Excavator [48 h]; Labor [200 h]; Skilled Labor [50 h]; Eq. Operator [50 h]; Pipe Fitter [50 h] | 6,030 | 6,030 | A10390 | 1 | L03 |
|  | 1 | **Electrical Works** |  | 2026-04-18 | 2027-07-10 |  |  |  |  |  |  |  |  |  |  |  |  |  |
|  | 3 | **Low Voltage** |  | 2026-04-18 | 2027-07-10 |  |  |  |  |  |  |  |  |  |  |  |  |  |
| CON-LEG101-LR-8020 |  | Installation of Low Voltage Cables Duct Banks [Local – 03 ] | 10d | 2026-04-18 A | 2026-05-07 A | CON-LEG101-LR-7820, CON-LEG101-PR-1320 | 100% |  | 2026-12-14 | 2026-12-24 |  |  | Truck [200 h]; Bucket [48 h]; Compactor [133.6 h]; Labor [50 h]; Driver [50 h]; Eq. Operator [300 h]; Carpenter [200 h]; Steel Fixer [50 h]; Mason [50 h]; Electrician [50 h]; Duct bank for (3) cables [2.35]; Duct bank for (1) cables [15.24]; Duct bank for (2) cables [5.86] | 7,916.5 | 7,916.5 | A5430 | 1 | L03 |
| CON-LEG101-LR-7820 |  | Excavation works for Low Voltage Cables [Local – 03 ] | 12d | 2027-06-09 | 2027-06-22 | CON-LEG101-LR-11270, CON-LEG101-LR-4240, CON-LEG101-LR-2120, CON-LEG101-LR-10780, CON-LEG101-LR-6920, CON-LEG101-EN-1680, CON-LEG101-EN-3440 |  |  |  |  | -118.3d | 0d | Excavator [96 h]; Truck [200 h]; Labor [400 h]; Driver [100 h]; Eq. Operator [100 h] |  |  | A5150 |  | L03 |
| CON-LEG101-LR-7920 |  | Installation of Low Voltage Cables [Local – 03 ] | 12d | 2027-06-23 | 2027-07-06 | CON-LEG101-LR-8020, CON-LEG101-LR-7820, CON-LEG101-PR-1900 |  |  |  |  | -118.3d | 0d | Excavator [96 h]; Truck [200 h]; Bucket [96 h]; Compactor [96 h]; Labor [200 h]; Skilled Labor [100 h]; Driver [100 h]; Eq. Operator [300 h]; Electrician [200 h]; Stranded armored Cables, Copper, 4C,50mm² XLPE /SWA/PVC [0.94]; Stranded armored Cables, Copper, 4C,35mm² XLPE/SWA /PVC [121.94]; Stranded armored Cables, Copper, 4xC16mm² XLPE /SWA/PVC [797.3]; Single Core Cable, Copper 1C,16mm² CU/PVC For Earth [121.94]; Single Core Cable, Copper 1C,10mm² CU/PVC For Earth [797.3]; Single Core Cable, Copper 1C,25mm² CU/PVC For Earth [0.94] | 72,611.3 |  | A5260 |  | L03 |
| CON-LEG101-LR-8800 |  | Installation of Earthing System [Local – 03 ] | 3d | 2027-07-07 | 2027-07-10 | CON-LEG101-LR-8020, CON-LEG101-PR-1320, CON-LEG101-LR-7920, CON-LEG101-PR-1480, CON-LEG101-PR-1310 |  |  |  |  | -118.3d | 0d | Earthing for Industrial switch poles and GSM towers [0.67]; Crane [48 h]; Labor [100 h]; Eq. Operator [200 h]; Electrician [100 h] | 1,005 |  | A6670 |  | L03 |
|  | 10 | **Telecommunications** |  | 2026-04-15 | 2027-08-03 |  |  |  |  |  |  |  |  |  |  |  |  |  |
| CON-LEG101-LR-9370 |  | Installation of Reinforced concrete manhole [Local – 03 ] | 21d | 2026-04-15 A | 2026-07-02 A | CON-LEG101-LR-9270, CON-LEG101-PR-3260 | 100% |  | 2027-02-24 | 2027-03-20 |  |  | Truck [48 h]; Bucket [48 h]; Compactor [48 h]; Labor [50 h]; Driver [50 h]; Eq. Operator [100 h]; Carpenter [50 h]; Steel Fixer [50 h]; Mason [50 h]; Electrician [50 h]; Reinforced concrete manhole Type 1- 1200x1500x1200mm [0.67]; Reinforced concrete manhole Type 2- 1200x1500x1200mm [2.01] | 45,560 | 45,560 | A7560 | 1 | L03 |
| CON-LEG101-LR-8870 |  | Installation of Sand and soil encased duct banks for primary network [Local – 03 ] | 17d | 2026-04-21 A | 2027-07-06 | CON-LEG101-LR-7820, CON-LEG101-EN-3280, CON-LEG101-EN-3440 | 30% | 11.9d | 2026-12-17 | 2027-01-05 | -115.2d | 3.1d | Truck [200 h]; Bucket [96 h]; Compactor [96 h]; Labor [100 h]; Driver [100 h]; Eq. Operator [500 h]; Carpenter [200 h]; Steel Fixer [100 h]; Mason [100 h]; Electrician [100 h]; 6-ways ducts, 50mm diameter, (HDPE TYPE) . [259.17]; 6-ways ducts, 50mm diameter, (HDPE TYPE) + 2 x 32 mm HDPE sub-ducts [121.05] | 56,862.3 | 17,058.69 | A6810 | 0.3 | L03 |
| CON-LEG101-LR-8970 |  | Installation of Concrete encased duct banks for primary network [Local – 03 ] | 6d | 2026-04-22 A | 2026-05-10 A | CON-LEG101-PR-3180, CON-LEG101-PR-4020, CON-LEG101-LR-8870, CON-LEG101-PR-1430, CON-LEG101-LR-8800 | 100% |  | 2027-01-10 | 2027-01-16 |  |  | Truck [116 h]; Bucket [48 h]; Compactor [48 h]; Labor [50 h]; Driver [50 h]; Eq. Operator [100 h]; Carpenter [58.33 h]; Steel Fixer [50 h]; Mason [50 h]; Electrician [50 h]; 6-ways ducts, 50mm diameter, (HDPE TYPE) + 4 x 32 mm HDPE sub-ducts [102.15]; 6-ways ducts, 50mm diameter, (HDPE TYPE) . [39.91] | 25,858.25 | 25,858.25 | A6950 | 1 | L03 |
| CON-LEG101-LR-9070 |  | Installation of Sand encased duct banks for secondary network [Local – 03 ] | 7d | 2026-10-15 A | 2027-07-15 | CON-LEG101-LR-8970, CON-LEG101-EN-3440 | 30% | 4.9d | 2027-06-20 | 2027-06-27 | -118.3d | 0d | Truck [48 h]; Bucket [48 h]; Compactor [48 h]; Labor [50 h]; Driver [50 h]; Eq. Operator [100 h]; Carpenter [50 h]; Steel Fixer [50 h]; Mason [50 h]; Electrician [50 h]; 2 x 32 mm HDPE sub-ducts [40.71]; 6-ways ducts, 50mm diameter, (HDPE TYPE) + 6 x 32 mm HDPE sub-ducts [40.24] | 12,119 | 3,635.7 | A7110 |  | L03 |
| CON-LEG101-LR-9170 |  | Installation of Sand and soil encased duct banks, for combined network of primary and secondary [Local – 03 ] | 17d | 2026-10-15 A | 2027-07-29 | CON-LEG101-LR-9070, CON-LEG101-EN-3440 | 30% | 11.9d | 2027-06-28 | 2027-07-17 | -118.3d | 0d | Truck [96 h]; Bucket [96 h]; Compactor [96 h]; Labor [100 h]; Driver [100 h]; Eq. Operator [200 h]; Carpenter [100 h]; Steel Fixer [100 h]; Mason [100 h]; Electrician [100 h]; 4 x 32 mm HDPE sub-ducts [8.07]; 6-ways ducts, 50mm diameter, (HDPE TYPE) + 2 x 32 mm HDPE sub-ducts [2.86] | 2,901 | 870.3 | A7270 |  | L03 |
| CON-LEG101-LR-9270 |  | Installation of Concrete encased duct banks for for combined network of primary and secondary [Local – 03 ] | 5d | 2026-10-15 A | 2027-08-03 | CON-LEG101-PR-3250, CON-LEG101-LR-9170, CON-LEG101-PR-1430 | 30% | 3.5d | 2027-07-18 | 2027-07-22 | -118.3d | 0d | Truck [48 h]; Bucket [48 h]; Compactor [48 h]; Labor [50 h]; Driver [50 h]; Eq. Operator [100 h]; Carpenter [50 h]; Steel Fixer [50 h]; Mason [50 h]; Electrician [50 h]; 6 x 32 mm HDPE sub-ducts [2.2] | 880 | 264 | A7410 |  | L03 |
|  | 11 | **CCTV feeding system and GSM** |  | 2026-05-23 | 2026-09-20 |  |  |  |  |  |  |  |  |  |  |  |  |  |
| CON-LEG101-LR-9900 |  | Installation of 25 Meters pole for CCTV Cameras [Local – 03 ] | 10d | 2026-05-23 A | 2026-07-08 A | CON-LEG101-LR-9730, CON-LEG101-PR-3870 | 100% |  | 2027-04-13 | 2027-04-24 |  |  | Truck [48 h]; Bucket [48 h]; Compactor [48 h]; Labor [50 h]; Driver [50 h]; Eq. Operator [100 h]; Carpenter [50 h]; Steel Fixer [50 h]; Mason [50 h]; Electrician [50 h]; "25 Meters pole for CCTV Cameras including : [0.67] | 87,100 | 87,100 | A8640 | 1 | L03 |
| CON-LEG101-LR-9980 |  | Installation of Short Range wireless point to point wireless bridge [Local – 03 ] | 10d | 2026-05-23 A | 2026-09-20 A | CON-LEG101-LR-9900, CON-LEG101-PR-3910 | 100% |  | 2027-04-25 | 2027-05-05 |  |  | Truck [48 h]; Bucket [48 h]; Compactor [48 h]; Labor [50 h]; Driver [50 h]; Eq. Operator [100 h]; Carpenter [50 h]; Steel Fixer [50 h]; Mason [50 h]; Electrician [50 h]; Short Range wireless point to point wireless bridge [1.34] | 17,420 | 17,420 | A8750 | 0.8 | L03 |
| CON-LEG101-LR-8590 |  | Excavation works for Low Voltage Cables for CCTV feeding system and GSM [Local – 03 ] | 10d | 2026-07-13 A | 2026-09-20 A | CON-LEG101-LR-8870, CON-LEG101-EN-3290, CON-LEG101-EN-3440, CON-LEG101-LR-9070 | 100% |  | 2027-04-08 | 2027-04-19 |  |  | Excavator [48 h]; Truck [48 h]; Labor [200 h]; Driver [50 h]; Eq. Operator [50 h]; Duct bank for (1) cables [33.5] | 8,040 | 8,040 | A6370 | 0.8 | L03 |
| CON-LEG101-LR-8660 |  | Installation of Low Voltage Cables for CCTV feeding system and GSM [Local – 03 ] | 12d | 2026-07-13 A | 2026-09-20 A | CON-LEG101-LR-8590, CON-LEG101-PR-1900 | 100% |  | 2027-04-20 | 2027-05-03 |  |  | Excavator [48 h]; Truck [48 h]; Bucket [48 h]; Compactor [48 h]; Labor [100 h]; Skilled Labor [50 h]; Driver [50 h]; Eq. Operator [150 h]; Electrician [100 h]; Stranded Copper wire, , 3xC,2 mm² XLPE/PVC [23.45]; Stranded armored Cables, Copper, 4C,35mm² XLPE/SWA /PVC [83.08]; Stranded armored Cables, Copper, 4xC16mm² XLPE /SWA/PVC [314.9]; Single Core Cable, Copper 1C,16mm² CU/PVC For Earth [83.08]; Single Core Cable, Copper 1C,10mm² CU/PVC For Earth [314.9] | 37,252 | 37,252 | A6450 | 0.8 | L03 |
| CON-LEG101-LR-9480 |  | Installation of 8POE ports Industrial Switches for remote poles [Local – 03 ] | 8d | 2026-07-13 A | 2026-09-20 A | CON-LEG101-LR-8660, CON-LEG101-PR-3410 | 100% |  | 2027-05-04 | 2027-05-12 |  |  | Truck [48 h]; Bucket [48 h]; Compactor [48 h]; Labor [50 h]; Driver [50 h]; Eq. Operator [100 h]; Carpenter [50 h]; Steel Fixer [50 h]; Mason [50 h]; Electrician [50 h]; 8POE ports Industrial Switches for remote poles |  |  | A7800 | 0.8 | L03 |
| CON-LEG101-LR-9650 |  | Installation of IP Outdoor CCTV POE Camera,5 MP, Metal Housing [Local – 03 ] | 5d | 2026-07-13 A | 2026-09-20 A | CON-LEG101-LR-9480, CON-LEG101-PR-3610 | 100% |  | 2027-05-13 | 2027-05-23 |  |  | Truck [48 h]; Bucket [48 h]; Compactor [48 h]; Labor [50 h]; Driver [50 h]; Eq. Operator [100 h]; Carpenter [50 h]; Steel Fixer [50 h]; Mason [50 h]; Electrician [50 h]; IP Outdoor CCTV POE Camera,5 MP, Metal Housing [3.35] | 16,750 | 16,750 | A8130 | 0.8 | L03 |
| CON-LEG101-LR-9730 |  | Installation of Outdoor PTZ IP66 [Local – 03 ] | 8d | 2026-07-13 A | 2026-09-20 A | CON-LEG101-LR-9650, CON-LEG101-PR-3650 | 100% |  | 2027-05-24 | 2027-06-01 |  |  | Truck [48 h]; Bucket [48 h]; Compactor [48 h]; Labor [50 h]; Driver [50 h]; Eq. Operator [100 h]; Carpenter [50 h]; Steel Fixer [50 h]; Mason [50 h]; Electrician [50 h]; "Outdoor PTZ with IR, HDTV 1080 and 31x optical, 12x digital, total 372x zoom, H264/265 with Motion JPEG. [0.67] | 23,450 | 23,450 | A8240 | 0.8 | L03 |

| ID | WBS | Activity | Duration | Start | Finish | Predecessors | Complete | Remaining | Planned start | Planned finish | Total float | Free float | Resources | Cost | Actual cost | Mapping Sheet Activity ID | JEDDAH 1 - Area Name | % A |
| --- | --- | --- | --- | --- | --- | --- | --- | --- | --- | --- | --- | --- | --- | --- | --- | --- | --- | --- |
|  | 12 | **Earthing System** |  | 2027-08-18 | 2027-08-26 |  |  |  |  |  |  |  |  |  |  |  |  |  |
| CON-LEG101-LR-15170 |  | Installation of Earthing for Distribution panels,SL feeder pillars, KWH, Unit substations and RMU [Local – 03 ] | 7d | 2027-08-18 | 2027-08-26 | CON-LEG101-LR-7520, CON-LEG101-LR-7440, CON-LEG101-LR-9980, CON-LEG101-LR-9900, CON-LEG101-LR-9730, CON-LEG101-LR-8370 |  |  |  |  | -11.3d | 35.1d | Earthing for Distribution panels,SL feeder pillars, KWH, Unit substations and RMU [5.36]; Crane [48 h]; Labor [100 h]; Eq. Operator [57.14 h]; Electrician [100 h] | 21,440 |  | A5850 | L03 |  |
|  | 9 | **Road Lighting** |  | 2026-04-18 | 2027-08-18 |  |  |  |  |  |  |  |  |  |  |  |  |  |
| CON-LEG101-LR-8120 |  | Installation of Lighting poles [Local – 03 ] | 15d | 2026-04-18 A | 2027-06-28 | CON-LEG101-PR-1950, CON-LEG101-LR-7820, CON-LEG101-LR-8110, CON-LEG101-PR-1910 | 70% | 4.5d | 2026-12-16 | 2027-01-03 | -105.5d | 0d | Lighting poles with 1 arm, height of (8 ) meters, including the power distribution box, cables, and RCC foundation. [33.5]; Excavator [48 h]; Truck [48 h]; Crane [48 h]; Labor [150 h]; Driver [50 h]; Eq. Operator [100 h]; Carpenter [50 h]; Steel Fixer [50 h]; Mason [50 h]; Electrician [150 h] | 113,900 | 79,730 | A5570 | L03 | 0.3 |
| CON-LEG101-LR-7440 |  | Installation of Unit Substation Including concrete foundations and fencing [Local – 03 ] | 10d | 2026-07-11 A | 2027-07-25 | CON-LEG101-LR-8120, CON-LEG101-LR-8590, CON-LEG101-EN-3310, CON-LEG101-EN-3320, CON-LEG101-EN-3330, CON-LEG101-EN-3360, CON-LEG101-PR-1890, CON-LEG101-LR-8220 | 20% | 8d | 2027-04-21 | 2027-05-02 | -11.3d | 0d | Unit Substation 13.8/0.4 K V, 500kVA ,Including concrete foundations and fencing, According to the specifications and standards of SEC [0.67]; Excavator [48 h]; Truck [48 h]; Bucket [48 h]; Compactor [48 h]; Labor [100 h]; Skilled Labor [50 h]; Driver [50 h]; Eq. Operator [150 h]; Electrician [100 h] | 56,950 | 11,390 | A4580 | L03 | 0.2 |
| CON-LEG101-LR-8220 |  | Installation of Street Lighting Luminaire [Local – 03 ] | 7d | 2026-10-14 A | 2027-06-30 | CON-LEG101-LR-8120, CON-LEG101-PR-1920 | 70% | 2.1d | 2027-06-14 | 2027-06-22 | 2d | 13.3d | Street Lighting( LED) Luminous efficacy ? 120Lum/w complete with control gear and lamp, (100) WATT. Max. [33.5]; Crane [48 h]; Labor [150 h]; Skilled Labor [100 h]; Eq. Operator [50 h]; Electrician [150 h] | 33,500 |  | A5710 | L03 |  |
| CON-LEG101-LR-7520 |  | Installation of Ring Main Unit RMU [Local – 03 ] | 15d | 2027-07-25 | 2027-08-11 | CON-LEG101-LR-7440, CON-LEG101-PR-2510 |  |  |  |  | -11.3d | 0d | Ring Main Unit RMU, 13.8KV, According to the specifications and standards of SEC [0.67]; Excavator [48 h]; Truck [48 h]; Bucket [48 h]; Compactor [48 h]; Labor [100 h]; Skilled Labor [50 h]; Driver [50 h]; Eq. Operator [150 h]; Electrician [100 h] | 50,250 |  | A4690 | L03 |  |
| CON-LEG101-LR-8370 |  | Installation of Earthing for Streetlighting feeders for every end pole circuits. [Local – 03 ] | 6d | 2027-08-11 | 2027-08-18 | CON-LEG101-LR-7520, CON-LEG101-LR-7440, CON-LEG101-PR-1480, CON-LEG101-LR-8220, CON-LEG101-PR-1310 |  |  |  |  | -11.3d | 0d | Earthing for Streetlighting feeders for every end pole circuits. [8.04]; Crane [48 h]; Labor [100 h]; Eq. Operator [50 h]; Carpenter [100 h]; Electrician [200 h] | 16,080 |  | A5930 | L03 |  |
|  | 4 | **Local – 04** |  | 2026-02-01 | 2027-10-17 |  |  |  |  |  |  |  |  |  |  |  |  |  |
|  | 5 | **TSE Network** |  | 2026-02-01 | 2027-05-11 |  |  |  |  |  |  |  |  |  |  |  |  |  |
|  | 2 | **Pipe Work** |  | 2026-02-01 | 2027-01-31 |  |  |  |  |  |  |  |  |  |  |  |  |  |
| CON-LEG101-LR-1350 |  | Excavation for TSE Network [Local – 04 ] | 12d | 2026-02-01 A | 2026-12-31 | CON-LEG101-LR-3450, CON-LEG101-LR-3540, CON-LEG101-LR-11380, CON-LEG101-LR-4250, CON-LEG101-LR-2820, CON-LEG101-EN-1720, CON-LEG101-EN-1730, CON-LEG101-EN-1740, CON-LEG101-EN-1810 | 90% | 1.2d | 2026-09-10 | 2026-09-24 | -66.24d | 0d | Excavator [35 h]; Water Tanker [24 h]; Truck [96 h]; Crane [48 h]; Labor [200 h]; Driver [150 h]; Eq. Operator [100 h]; Piping TSE Network - 110mm Diameter Depth: 0.00 m - 1.50 m. [6.9]; Piping TSE Network - 110mm Diameter Depth: 1.51m - 2.50m [10.14]; Piping TSE Network - 160mm Diameter Depth: 0.00 m - 1.50 m. [18.26]; Piping TSE Network - 160mm Diameter Depth: 1.51m - 2.50m [54.14]; Piping TSE Network - 200mm Diameter Depth: 2.51m - 3.50m; Piping TSE Network - 200mm Diameter Depth exceeds 3.50m; Piping TSE Network - 110mm Diameter Depth exceeds 2.50m; Piping TSE Network - 160mm Diameter Depth exceeds 2.50m; Piping TSE Network - 200mm Diameter Depth: 0.00 m - 1.50 m.; Piping TSE Network - 200mm Diameter Depth: 1.51m - 2.50m; Piping TSE Network - 250mm Diameter Depth: 0.00 m - 1.50 m.; Piping TSE Network - 250mm Diameter Depth: 1.51m - 2.50m; Piping TSE Network - 250mm Diameter Depth exceeds 2.50m | 24,239 | 21,815.1 | A10990 | L04 | 0.9 |
| CON-LEG101-LR-1470 |  | Granular bedding for TSE Network [Local – 04 ] | 6d | 2026-02-15 A | 2027-01-02 | CON-LEG101-LR-1350 | 80% | 1.2d | 2026-08-02 | 2026-08-09 | -66.24d | 0d | Loader [48 h]; Truck [48 h]; Driver [50 h]; Eq. Operator [50 h]; Piping TSE Network - 110mm Diameter Depth: 0.00 m - 1.50 m. [1.73]; Piping TSE Network - 110mm Diameter Depth: 1.51m - 2.50m [2.54]; Piping TSE Network - 160mm Diameter Depth: 0.00 m - 1.50 m. [4.56]; Piping TSE Network - 160mm Diameter Depth: 1.51m - 2.50m [13.53]; Piping TSE Network - 200mm Diameter Depth: 2.51m - 3.50m; Piping TSE Network - 200mm Diameter Depth exceeds 3.50m; Piping TSE Network - 110mm Diameter Depth exceeds 2.50m; Piping TSE Network - 160mm Diameter Depth exceeds 2.50m; Piping TSE Network - 200mm Diameter Depth: 0.00 m - 1.50 m.; Piping TSE Network - 200mm Diameter Depth: 1.51m - 2.50m; Piping TSE Network - 250mm Diameter Depth: 0.00 m - 1.50 m.; Piping TSE Network - 250mm Diameter Depth: 1.51m - 2.50m; Piping TSE Network - 250mm Diameter Depth exceeds 2.50m | 6,059.4 | 4,847.52 | A11110 | L04 | 0.8 |
| CON-LEG101-LR-1580 |  | Installation of Pipe for TSE Network [Local – 04 ] | 12d | 2026-02-17 A | 2027-01-09 | CON-LEG101-PR-2590, CON-LEG101-LR-1470, CON-LEG101-PR-1690 | 52% | 5.76d | 2026-08-09 | 2026-08-23 | -66.24d | 0d | Excavator [26 h]; Crane [48 h]; Labor [150 h]; Skilled Labor [100 h]; Eq. Operator [100 h]; Plumber [50 h]; Pipe Fitter [50 h]; Piping TSE Network - 110mm Diameter Depth: 0.00 m - 1.50 m. [15.53]; Piping TSE Network - 110mm Diameter Depth: 1.51m - 2.50m [22.83]; Piping TSE Network - 160mm Diameter Depth: 0.00 m - 1.50 m. [41.08]; Piping TSE Network - 160mm Diameter Depth: 1.51m - 2.50m [121.81]; Piping TSE Network - 200mm Diameter Depth: 2.51m - 3.50m; Piping TSE Network - 200mm Diameter Depth exceeds 3.50m; Piping TSE Network - 110mm Diameter Depth exceeds 2.50m; Piping TSE Network - 160mm Diameter Depth exceeds 2.50m; Piping TSE Network - 200mm Diameter Depth: 0.00 m - 1.50 m.; Piping TSE Network - 200mm Diameter Depth: 1.51m - 2.50m; Piping TSE Network - 250mm Diameter Depth: 0.00 m - 1.50 m.; Piping TSE Network - 250mm Diameter Depth: 1.51m - 2.50m; Piping TSE Network - 250mm Diameter Depth exceeds 2.50m | 54,540.1 | 28,360.85 | A11230 | L04 | 0.52 |
| CON-LEG101-LR-1910 |  | Granular Surround for TSE Network [Local – 04 ] | 6d | 2026-02-18 A | 2027-01-23 | CON-LEG101-LR-1810, CON-LEG101-EN-3450 | 52% | 2.88d | 2026-09-02 | 2026-09-09 | -66.24d | 0d | Loader [48 h]; Truck [100 h]; Driver [100 h]; Eq. Operator [50 h]; Piping TSE Network - 110mm Diameter Depth: 0.00 m - 1.50 m. [1.73]; Piping TSE Network - 110mm Diameter Depth: 1.51m - 2.50m [2.54]; Piping TSE Network - 160mm Diameter Depth: 0.00 m - 1.50 m. [4.56]; Piping TSE Network - 160mm Diameter Depth: 1.51m - 2.50m [13.53]; Piping TSE Network - 200mm Diameter Depth: 2.51m - 3.50m; Piping TSE Network - 200mm Diameter Depth exceeds 3.50m; Piping TSE Network - 110mm Diameter Depth exceeds 2.50m; Piping TSE Network - 160mm Diameter Depth exceeds 2.50m; Piping TSE Network - 200mm Diameter Depth: 0.00 m - 1.50 m.; Piping TSE Network - 200mm Diameter Depth: 1.51m - 2.50m; Piping TSE Network - 250mm Diameter Depth: 0.00 m - 1.50 m.; Piping TSE Network - 250mm Diameter Depth: 1.51m - 2.50m; Piping TSE Network - 250mm Diameter Depth exceeds 2.50m | 6,059.4 | 3,150.89 | A11600 | L04 | 0.52 |
| CON-LEG101-LR-2020 |  | Installation of Micron Marker Magnetic Tape [Local – 04 ] | 3d | 2026-03-11 A | 2027-01-24 | CON-LEG101-LR-1910 | 52% | 1.44d | 2026-08-25 | 2026-08-29 | -66.24d | 0d | Piping TSE Network - 200mm Diameter Depth: 2.51m - 3.50m; Piping TSE Network - 200mm Diameter Depth exceeds 3.50m; Piping TSE Network - 110mm Diameter Depth exceeds 2.50m; Piping TSE Network - 160mm Diameter Depth exceeds 2.50m; Piping TSE Network - 200mm Diameter Depth: 0.00 m - 1.50 m.; Piping TSE Network - 200mm Diameter Depth: 1.51m - 2.50m; Piping TSE Network - 250mm Diameter Depth: 0.00 m - 1.50 m.; Piping TSE Network - 250mm Diameter Depth: 1.51m - 2.50m; Piping TSE Network - 250mm Diameter Depth exceeds 2.50m; Labor [200 h]; Piping TSE Network - 110mm Diameter Depth: 0.00 m - 1.50 m. [1.73]; Piping TSE Network - 110mm Diameter Depth: 1.51m - 2.50m [2.54]; Piping TSE Network - 160mm Diameter Depth: 0.00 m - 1.50 m. [4.56]; Piping TSE Network - 160mm Diameter Depth: 1.51m - 2.50m [13.53] | 6,059.4 | 3,150.89 | A11720 | L04 | 0.52 |
| CON-LEG101-LR-2130 |  | Backfilling to Subgrade Elevation [Local – 04 ] | 12d | 2026-03-14 A | 2027-01-31 | CON-LEG101-LR-2020, CON-LEG101-EN-3440 | 52% | 5.76d | 2026-08-29 | 2026-09-12 | -66.24d | 66.24d | Piping TSE Network - 200mm Diameter Depth: 2.51m - 3.50m; Piping TSE Network - 200mm Diameter Depth exceeds 3.50m; Piping TSE Network - 110mm Diameter Depth exceeds 2.50m; Piping TSE Network - 160mm Diameter Depth exceeds 2.50m; Piping TSE Network - 200mm Diameter Depth: 0.00 m - 1.50 m.; Piping TSE Network - 200mm Diameter Depth: 1.51m - 2.50m; Piping TSE Network - 250mm Diameter Depth: 0.00 m - 1.50 m.; Piping TSE Network - 250mm Diameter Depth: 1.51m - 2.50m; Piping TSE Network - 250mm Diameter Depth exceeds 2.50m; Excavator [48 h]; Water Tanker [48 h]; Road Roller [48 h]; Bucket [100 h]; Compactor [100 h]; Labor [200 h]; Driver [50 h]; Eq. Operator [200 h]; Piping TSE Network - 110mm Diameter Depth: 0.00 m - 1.50 m. [3.45]; Piping TSE Network - 110mm Diameter Depth: 1.51m - 2.50m [5.07]; Piping TSE Network - 160mm Diameter Depth: 0.00 m - 1.50 m. [9.13]; Piping TSE Network - 160mm Diameter Depth: 1.51m - 2.50m [27.07] | 12,119.5 | 6,302.14 | A11840 | L04 | 0.52 |
| CON-LEG101-LR-1690 |  | Testing for TSE Network [Local – 04 ] | 6d | 2027-01-09 | 2027-01-16 | CON-LEG101-LR-1580 |  |  |  |  | -66.24d | 0d | Labor [200 h]; Skilled Labor [100 h]; Pipe Fitter [100 h]; Piping TSE Network - 110mm Diameter Depth: 0.00 m - 1.50 m. [3.45]; Piping TSE Network - 110mm Diameter Depth: 1.51m - 2.50m [5.07]; Piping TSE Network - 160mm Diameter Depth: 0.00 m - 1.50 m. [9.13]; Piping TSE Network - 160mm Diameter Depth: 1.51m - 2.50m [27.07]; Piping TSE Network - 200mm Diameter Depth: 2.51m - 3.50m; Piping TSE Network - 200mm Diameter Depth exceeds 3.50m; Piping TSE Network - 110mm Diameter Depth exceeds 2.50m; Piping TSE Network - 160mm Diameter Depth exceeds 2.50m; Piping TSE Network - 200mm Diameter Depth: 0.00 m - 1.50 m.; Piping TSE Network - 200mm Diameter Depth: 1.51m - 2.50m; Piping TSE Network - 250mm Diameter Depth: 0.00 m - 1.50 m.; Piping TSE Network - 250mm Diameter Depth: 1.51m - 2.50m; Piping TSE Network - 250mm Diameter Depth exceeds 2.50m | 12,119.5 |  | A11350 | L04 |  |
| CON-LEG101-LR-1810 |  | Concrete encasement, pipe dia 110 mm [Local – 04 ] | 3d | 2027-01-16 | 2027-01-19 | CON-LEG101-LR-1690, CON-LEG101-EN-3450, CON-LEG101-PR-1430 |  |  |  |  | -66.24d | 0d | Labor [200 h]; Carpenter [50 h]; Mason [100 h]; Piping TSE Network - Concrete encasement, pipe dia 110 mm [4.56] | 1,596 |  | A11500 | L04 |  |
|  | 1 | **Valves/Chamber** |  | 2027-01-24 | 2027-05-11 |  |  |  |  |  |  |  |  |  |  |  |  |  |
| CON-LEG101-LR-2730 |  | Installation of Air Valve chambers [Local – 04 ] | 21d | 2027-01-24 | 2027-02-23 | CON-LEG101-LR-1580, CON-LEG101-PR-1970, CON-LEG101-LR-2020 |  |  |  |  | -50.48d | 0d | Excavator [48 h]; Labor [100 h]; Skilled Labor [50 h]; Eq. Operator [50 h]; Pipe Fitter [50 h]; Piping TSE Network - Air valve chamber; on less than 315 mm diameter pipeline [1.34] | 53,600 |  | A12850 | L04 |  |
| CON-LEG101-LR-15060 |  | Installation of Wash-out Valve chambers [Local – 04 ] | 21d | 2027-02-23 | 2027-03-20 | CON-LEG101-LR-2730 |  |  |  |  | -50.48d | 0d | Excavator [48 h]; Labor [200 h]; Skilled Labor [50 h]; Eq. Operator [50 h]; Pipe Fitter [50 h]; Piping TSE Network - Wash out valve chamber; on 110-400 mm diameter pipeline [0.67] | 26,800 |  | A12850 | L04 |  |
| CON-LEG101-LR-2240 |  | Installation of Gate (Sluice) valves (Direct buried) [Local – 04 ] | 9d | 2027-02-23 | 2027-03-06 | CON-LEG101-LR-2730, CON-LEG101-LR-1580, CON-LEG101-PR-1970, CON-LEG101-LR-1040 |  |  |  |  | -38.48d | 12d | Excavator [48 h]; Labor [220 h]; Skilled Labor [50 h]; Eq. Operator [50 h]; Pipe Fitter [50 h]; Piping TSE Network - Gate valves, on pipe with diameter 110 mm [4.02]; Piping TSE Network - Gate valves, on pipe with diameter 160 mm [1.34] | 18,090 |  | A12050 | L04 |  |
| CON-LEG101-LR-2350 |  | Installation of Wash-out Valves [Local – 04 ] | 15d | 2027-03-20 | 2027-04-06 | CON-LEG101-LR-1580, CON-LEG101-LR-15060, CON-LEG101-LR-2240, CON-LEG101-PR-1970 |  |  |  |  | -50.48d | 0d | Excavator [48 h]; Labor [100 h]; Skilled Labor [50 h]; Eq. Operator [50 h]; Pipe Fitter [50 h]; Piping TSE Network - Wash out valve, on pipes with diameter 110-400 mm [0.67] | 8,040 |  | A12260 | L04 |  |
| CON-LEG101-LR-2430 |  | Installation of Air Valves [Local – 04 ] | 15d | 2027-04-06 | 2027-04-24 | CON-LEG101-LR-2730, CON-LEG101-LR-2350, CON-LEG101-PR-1970, CON-LEG101-LR-2420 |  |  |  |  | -50.48d | 0d | Excavator [48 h]; Labor [100 h]; Skilled Labor [50 h]; Eq. Operator [50 h]; Pipe Fitter [50 h]; Piping TSE Network - Air valve complete with gate valves, on pipes with diameter less than 315 mm. [0.67] | 6,030 |  | A12380 | L04 |  |
| CON-LEG101-LR-2510 |  | Installation of Fire Hydrant [Local – 04 ] | 15d | 2027-04-24 | 2027-05-11 | CON-LEG101-LR-2130, CON-LEG101-LR-2430, CON-LEG101-PR-2470 |  |  |  |  | -50.48d | 118.52d | Piping TSE Network - 3-outlet fire hydrant (2 x 2.5 inch and 1 x 4.5 inch) in the form of a separate dry vacuum cylinder [3.35]; Excavator [48 h]; Labor [150 h]; Skilled Labor [50 h]; Eq. Operator [50 h]; Mason [50 h]; Pipe Fitter [50 h] | 30,150 |  | A12500 | L04 |  |

| ID | WBS | Activity | Duration | Start | Finish | Predecessors | Complete | Remaining | Planned start | Planned finish | Total float | Free float | Resources | Cost | Actual cost | Mapping Sheet Activity ID | % A | JEDDAH 1 - Area Name |
| --- | --- | --- | --- | --- | --- | --- | --- | --- | --- | --- | --- | --- | --- | --- | --- | --- | --- | --- |
|  | 6 | **Public Water Utility Distribution** |  | 2026-02-01 | 2027-04-26 |  |  |  |  |  |  |  |  |  |  |  |  |  |
|  | 2 | **Pipe Work** |  | 2026-02-01 | 2027-01-31 |  |  |  |  |  |  |  |  |  |  |  |  |  |
| CON-LEG101-LR-10090 |  | Excavation for Public Water Utility Distribution Piping [Local – 04 ] | 10d | 2026-02-01 A | 2027-01-02 | CON-LEG101-LR-1350, CON-LEG101-EN-1690, CON-LEG101-EN-1700, CON-LEG101-EN-1710, CON-LEG101-EN-3440 | 90% | 1d | 2026-09-26 | 2026-10-06 | -66.2d | 0d | Public Water - 110mm Diameter Depth: 0.00 m - 1.50 m. [2.89]; Public Water - 110mm Diameter Depth: 1.51 m - 2.50 m. [1.88]; Public Water - 160mm Diameter Depth: 1.51m - 2.50m [39.32]; Excavator [33.71 h]; Water Tanker [28.71 h]; Truck [96 h]; Crane [48 h]; Labor [200 h]; Driver [150 h]; Eq. Operator [100 h]; Public Water - 160mm Diameter Depth: 0.00 m - 1.50 m. [31.73]; Public Water - 110mm Diameter Depth exceeds 2.50m; Public Water - 200mm Diameter Depth: 0.00m -1.50m; Public Water - 160mm Diameter Depth exceeds 2.50m; Public Water - 200mm Diameter Depth: 1.51m - 2.50m; Public Water - 200mm Diameter Depth exceeds 2.50m | 19,804.4 | 17,823.96 | A9070 | 0.9 | L04 |
| CON-LEG101-LR-10190 |  | Granular bedding for Public Water Utility Distribution Piping [Local – 04 ] | 5d | 2026-02-15 A | 2027-01-03 | CON-LEG101-LR-10090 | 80% | 1d | 2026-08-10 | 2026-08-16 | -66.2d | 0d | Public Water - 110mm Diameter Depth: 0.00 m - 1.50 m. [0.72]; Public Water - 110mm Diameter Depth: 1.51 m - 2.50 m. [0.47]; Public Water - 160mm Diameter Depth: 1.51m - 2.50m [9.83]; Loader [48 h]; Truck [48 h]; Driver [50 h]; Eq. Operator [50 h]; Public Water - 160mm Diameter Depth: 0.00 m - 1.50 m. [7.92]; Public Water - 110mm Diameter Depth exceeds 2.50m; Public Water - 200mm Diameter Depth: 0.00m -1.50m; Public Water - 160mm Diameter Depth exceeds 2.50m; Public Water - 200mm Diameter Depth: 1.51m - 2.50m; Public Water - 200mm Diameter Depth exceeds 2.50m | 4,947.9 | 3,958.32 | A9190 | 0.8 | L04 |
| CON-LEG101-LR-10290 |  | Installation of Pipe for Public Water Utility Distribution Piping [Local – 04 ] | 10d | 2026-02-17 A | 2027-01-10 | CON-LEG101-PR-4010, CON-LEG101-LR-10190, CON-LEG101-PR-1660 | 40% | 6d | 2026-08-16 | 2026-08-27 | -66.2d | 0d | Public Water - 110mm Diameter Depth: 0.00 m - 1.50 m. [6.49]; Public Water - 110mm Diameter Depth: 1.51 m - 2.50 m. [4.23]; Public Water - 160mm Diameter Depth: 1.51m - 2.50m [88.46]; Excavator [48 h]; Crane [48 h]; Labor [150 h]; Skilled Labor [100 h]; Eq. Operator [100 h]; Plumber [50 h]; Pipe Fitter [50 h]; Public Water - 160mm Diameter Depth: 0.00 m - 1.50 m. [71.4]; Public Water - 110mm Diameter Depth exceeds 2.50m; Public Water - 200mm Diameter Depth: 0.00m -1.50m; Public Water - 160mm Diameter Depth exceeds 2.50m; Public Water - 200mm Diameter Depth: 1.51m - 2.50m; Public Water - 200mm Diameter Depth exceeds 2.50m | 44,556.3 | 17,822.52 | A9310 | 0.4 | L04 |
| CON-LEG101-LR-10590 |  | Granular Surround for Public Water Utility Distribution Piping [Local – 04 ] | 5d | 2026-02-18 A | 2027-01-23 | CON-LEG101-LR-10490, CON-LEG101-EN-3450 | 40% | 3d | 2026-09-06 | 2026-09-12 | -66.2d | 0d | Public Water - 110mm Diameter Depth: 0.00 m - 1.50 m. [0.72]; Public Water - 110mm Diameter Depth: 1.51 m - 2.50 m. [0.47]; Public Water - 160mm Diameter Depth: 1.51m - 2.50m [9.83]; Loader [48 h]; Truck [400 h]; Driver [100 h]; Eq. Operator [50 h]; Public Water - 160mm Diameter Depth: 0.00 m - 1.50 m. [7.93]; Public Water - 110mm Diameter Depth exceeds 2.50m; Public Water - 200mm Diameter Depth: 0.00m -1.50m; Public Water - 160mm Diameter Depth exceeds 2.50m; Public Water - 200mm Diameter Depth: 1.51m - 2.50m; Public Water - 200mm Diameter Depth exceeds 2.50m | 4,950.1 | 1,980.04 | A9700 | 0.4 | L04 |
| CON-LEG101-LR-10390 |  | Testing for Public Water Utility Distribution Piping [Local – 04 ] | 5d | 2027-01-10 | 2027-01-16 | CON-LEG101-LR-10290 |  |  |  |  | -66.2d | 0d | Public Water - 110mm Diameter Depth: 0.00 m - 1.50 m. [1.44]; Public Water - 110mm Diameter Depth: 1.51 m - 2.50 m. [0.94]; Public Water - 160mm Diameter Depth: 1.51m - 2.50m [19.66]; Labor [200 h]; Skilled Labor [100 h]; Pipe Fitter [100 h]; Public Water - 160mm Diameter Depth: 0.00 m - 1.50 m. [15.87]; Public Water - 110mm Diameter Depth exceeds 2.50m; Public Water - 200mm Diameter Depth: 0.00m -1.50m; Public Water - 160mm Diameter Depth exceeds 2.50m; Public Water - 200mm Diameter Depth: 1.51m - 2.50m; Public Water - 200mm Diameter Depth exceeds 2.50m | 9,902.4 |  | A9440 |  | L04 |
| CON-LEG101-LR-10490 |  | Concrete encasement, pipe dia 110 mm [Local – 04 ] | 3d | 2027-01-16 | 2027-01-19 | CON-LEG101-LR-10390, CON-LEG101-EN-3450, CON-LEG101-PR-1430 |  |  |  |  | -66.2d | 0d | Public Water - Concrete encasement, pipe dia 110 mm [12.86]; Labor [200 h]; Carpenter [50 h]; Mason [100 h] | 4,501 |  | A9590 |  | L04 |
| CON-LEG101-LR-10690 |  | Installation of Micron Marker Magnetic Tape [Local – 04 ] | 3d | 2027-01-23 | 2027-01-26 | CON-LEG101-LR-10590 |  |  |  |  | -66.2d | 0d | Public Water - 110mm Diameter Depth: 0.00 m - 1.50 m. [0.72]; Public Water - 110mm Diameter Depth: 1.51 m - 2.50 m. [0.47]; Public Water - 160mm Diameter Depth: 1.51m - 2.50m [9.83]; Labor [200 h]; Public Water - 160mm Diameter Depth: 0.00 m - 1.50 m. [7.93]; Public Water - 110mm Diameter Depth exceeds 2.50m; Public Water - 200mm Diameter Depth: 0.00m -1.50m; Public Water - 160mm Diameter Depth exceeds 2.50m; Public Water - 200mm Diameter Depth: 1.51m - 2.50m; Public Water - 200mm Diameter Depth exceeds 2.50m | 4,950.1 |  | A9820 |  | L04 |
| CON-LEG101-LR-10790 |  | Backfilling to Subgrade Elevation [Local – 04 ] | 4d | 2027-01-26 | 2027-01-31 | CON-LEG101-LR-10690, CON-LEG101-EN-3440 |  |  |  |  | -66.2d | 56.28d | Public Water - 110mm Diameter Depth: 0.00 m - 1.50 m. [1.44]; Public Water - 110mm Diameter Depth: 1.51 m - 2.50 m. [0.94]; Public Water - 160mm Diameter Depth: 1.51m - 2.50m [19.66]; Excavator [48 h]; Water Tanker [48 h]; Road Roller [48 h]; Bucket [100 h]; Compactor [100 h]; Labor [200 h]; Driver [100 h]; Eq. Operator [200 h]; Public Water - 160mm Diameter Depth: 0.00 m - 1.50 m. [15.87]; Public Water - 110mm Diameter Depth exceeds 2.50m; Public Water - 200mm Diameter Depth: 0.00m -1.50m; Public Water - 160mm Diameter Depth exceeds 2.50m; Public Water - 200mm Diameter Depth: 1.51m - 2.50m; Public Water - 200mm Diameter Depth exceeds 2.50m | 9,902.4 |  | A9940 |  | L04 |
|  | 1 | **Valves/Chamber** |  | 2027-03-20 | 2027-04-26 |  |  |  |  |  |  |  |  |  |  |  |  |  |
| CON-LEG101-LR-1280 |  | Installation of Air Valve chambers [Local – 04 ] | 20d | 2027-03-20 | 2027-04-12 | CON-LEG101-LR-10290, CON-LEG101-PR-1960, CON-LEG101-LR-15060 |  |  |  |  | 64.52d | 0d | Public Water - Air valve chamber; on less than 315 mm diameter pipeline [0.67]; Excavator [48 h]; Labor [150 h]; Skilled Labor [50 h]; Eq. Operator [50 h]; Pipe Fitter [50 h] | 26,800 |  | A10640 |  | L04 |
| CON-LEG101-LR-1050 |  | Installation of Gate (Sluice) valves (Direct buried) [Local – 04 ] | 6d | 2027-04-12 | 2027-04-19 | CON-LEG101-LR-10790, CON-LEG101-LR-1280, CON-LEG101-LR-10290, CON-LEG101-PR-1960 |  |  |  |  | 64.52d | 0d | Public Water - Gate valves, on pipe with diameter 110 mm [4.02]; Public Water - Gate valves, on pipe with diameter 160 mm [1.34]; Public Water - Gate valves, on pipe with diameter 200 mm [0.67]; Excavator [48 h]; Labor [100 h]; Skilled Labor [50 h]; Eq. Operator [50 h]; Pipe Fitter [50 h] | 23,450 |  | A10140 |  | L04 |
| CON-LEG101-LR-1180 |  | Installation of Air Valves [Local – 04 ] | 6d | 2027-04-19 | 2027-04-26 | CON-LEG101-LR-1280, CON-LEG101-LR-1050, CON-LEG101-PR-1960 |  |  |  |  | 64.52d | 0d | Public Water - Air valve complete with gate valves, on pipes with diameter less than 315 mm. [0.67]; Excavator [48 h]; Labor [100 h]; Skilled Labor [50 h]; Eq. Operator [50 h]; Pipe Fitter [50 h] | 6,030 |  | A10400 |  | L04 |
|  | 8 | **Electrical Works** |  | 2027-06-10 | 2027-07-25 |  |  |  |  |  |  |  |  |  |  |  |  |  |
|  | 3 | **Low Voltage** |  | 2027-06-10 | 2027-07-25 |  |  |  |  |  |  |  |  |  |  |  |  |  |
| CON-LEG101-LR-7830 |  | Excavation works for Low Voltage Cables [Local – 04 ] | 13d | 2027-06-10 | 2027-06-24 | CON-LEG101-LR-4250, CON-LEG101-LR-11380, CON-LEG101-LR-3450, CON-LEG101-LR-3540, CON-LEG101-LR-2130, CON-LEG101-LR-10790, CON-LEG101-LR-6930, CON-LEG101-EN-1680, CON-LEG101-EN-3440 |  |  |  |  | -169d | 0d | Excavator [96 h]; Truck [200 h]; Labor [400 h]; Driver [100 h]; Eq. Operator [250 h] |  |  | A5160 |  | L04 |
| CON-LEG101-LR-8030 |  | Installation of Low Voltage Cables Duct Banks [Local – 04 ] | 10d | 2027-06-26 | 2027-07-06 | CON-LEG101-LR-7830, CON-LEG101-PR-1320 |  |  |  |  | -169d | 0d | Truck [100 h]; Bucket [48 h]; Compactor [48 h]; Labor [50 h]; Driver [50 h]; Eq. Operator [100 h]; Carpenter [100 h]; Steel Fixer [50 h]; Mason [50 h]; Electrician [50 h]; Duct bank for (3) cables [2.35]; Duct bank for (1) cables [15.24]; Duct bank for (2) cables [5.86] | 7,916.5 |  | A5440 |  | L04 |
| CON-LEG101-LR-7930 |  | Installation of Low Voltage Cables [Local – 04 ] | 13d | 2027-07-07 | 2027-07-21 | CON-LEG101-LR-8030, CON-LEG101-LR-7830, CON-LEG101-PR-1900 |  |  |  |  | -108d | 0d | Excavator [96 h]; Truck [144.31 h]; Bucket [96 h]; Compactor [96 h]; Labor [200 h]; Skilled Labor [100 h]; Driver [100 h]; Eq. Operator [350 h]; Electrician [200 h]; Stranded armored Cables, Copper, 4C,50mm² XLPE /SWA/PVC [0.94]; Stranded armored Cables, Copper, 4C,35mm² XLPE/SWA /PVC [121.94]; Stranded armored Cables, Copper, 4xC16mm² XLPE /SWA/PVC [797.3]; Single Core Cable, Copper 1C,16mm² CU/PVC For Earth [121.94]; Single Core Cable, Copper 1C,10mm² CU/PVC For Earth [797.3]; Single Core Cable, Copper 1C,25mm² CU/PVC For Earth [0.94] | 72,611.3 |  | A5270 |  | L04 |
| CON-LEG101-LR-8810 |  | Installation of Earthing System [Local – 04 ] | 3d | 2027-07-22 | 2027-07-25 | CON-LEG101-LR-8030, CON-LEG101-PR-1320, CON-LEG101-LR-7930, CON-LEG101-PR-1480, CON-LEG101-PR-1310 |  |  |  |  | -45.4d | 1d | Earthing for Industrial switch poles and GSM towers [0.67]; Crane [48 h]; Labor [100 h]; Eq. Operator [50 h]; Electrician [100 h] | 1,005 |  | A6680 |  | L04 |
|  | 10 | **Telecommunications** |  | 2027-07-07 | 2027-10-02 |  |  |  |  |  |  |  |  |  |  |  |  |  |
| CON-LEG101-LR-8880 |  | Installation of Sand and soil encased duct banks for primary network [Local – 04 ] | 17d | 2027-07-07 | 2027-07-26 | CON-LEG101-LR-7830, CON-LEG101-EN-3280, CON-LEG101-EN-3440, CON-LEG101-LR-8030 |  |  |  |  | -169d | 0d | Truck [156.47 h]; Bucket [96 h]; Compactor [96 h]; Labor [100 h]; Driver [100 h]; Eq. Operator [200 h]; Carpenter [100 h]; Steel Fixer [100 h]; Mason [100 h]; Electrician [100 h]; 6-ways ducts, 50mm diameter, (HDPE TYPE) . [259.17]; 6-ways ducts, 50mm diameter, (HDPE TYPE) + 2 x 32 mm HDPE sub-ducts [121.05] | 56,862.3 |  | A6820 |  | L04 |
| CON-LEG101-LR-8980 |  | Installation of Concrete encased duct banks for primary network [Local – 04 ] | 6d | 2027-07-27 | 2027-08-02 | CON-LEG101-PR-3180, CON-LEG101-PR-4020, CON-LEG101-LR-8880, CON-LEG101-PR-1430 |  |  |  |  | -169d | 0d | Truck [48 h]; Bucket [48 h]; Compactor [48 h]; Labor [50 h]; Driver [50 h]; Eq. Operator [100 h]; Carpenter [50 h]; Steel Fixer [50 h]; Mason [50 h]; Electrician [50 h]; 6-ways ducts, 50mm diameter, (HDPE TYPE) + 4 x 32 mm HDPE sub-ducts [102.15]; 6-ways ducts, 50mm diameter, (HDPE TYPE) . [39.91] | 25,858.25 |  | A6960 |  | L04 |
| CON-LEG101-LR-9080 |  | Installation of Sand encased duct banks for secondary network [Local – 04 ] | 7d | 2027-08-03 | 2027-08-10 | CON-LEG101-LR-8980, CON-LEG101-EN-3440 |  |  |  |  | -169d | 0d | Truck [48 h]; Bucket [48 h]; Compactor [48 h]; Labor [50 h]; Driver [50 h]; Eq. Operator [100 h]; Carpenter [50 h]; Steel Fixer [50 h]; Mason [50 h]; Electrician [50 h]; 2 x 32 mm HDPE sub-ducts [40.71]; 6-ways ducts, 50mm diameter, (HDPE TYPE) + 6 x 32 mm HDPE sub-ducts [40.24] | 12,119 |  | A7120 |  | L04 |
| CON-LEG101-LR-9180 |  | Installation of Sand and soil encased duct banks, for combined network of primary and secondary [Local – 04 ] | 18d | 2027-08-11 | 2027-08-31 | CON-LEG101-LR-9080, CON-LEG101-EN-3440 |  |  |  |  | -169d | 0d | Truck [96 h]; Bucket [96 h]; Compactor [96 h]; Labor [100 h]; Driver [100 h]; Eq. Operator [200 h]; Carpenter [100 h]; Steel Fixer [100 h]; Mason [100 h]; Electrician [100 h]; 4 x 32 mm HDPE sub-ducts [8.07]; 6-ways ducts, 50mm diameter, (HDPE TYPE) + 2 x 32 mm HDPE sub-ducts [2.86] | 2,901 |  | A7280 |  | L04 |
| CON-LEG101-LR-9280 |  | Installation of Concrete encased duct banks for for combined network of primary and secondary [Local – 04 ] | 5d | 2027-09-01 | 2027-09-06 | CON-LEG101-PR-3250, CON-LEG101-LR-9180, CON-LEG101-PR-1430 |  |  |  |  | -169d | 0d | Truck [48 h]; Bucket [48 h]; Compactor [48 h]; Labor [50 h]; Driver [50 h]; Eq. Operator [100 h]; Carpenter [50 h]; Steel Fixer [50 h]; Mason [50 h]; Electrician [50 h]; 6 x 32 mm HDPE sub-ducts [2.2] | 880 |  | A7420 |  | L04 |
| CON-LEG101-LR-9380 |  | Installation of Reinforced concrete manhole [Local – 04 ] | 21d | 2027-09-07 | 2027-10-02 | CON-LEG101-LR-9280, CON-LEG101-PR-3260 |  |  |  |  | -169d | 0d | Truck [48 h]; Bucket [48 h]; Compactor [48 h]; Labor [50 h]; Driver [50 h]; Eq. Operator [100 h]; Carpenter [50 h]; Steel Fixer [50 h]; Mason [50 h]; Electrician [50 h]; Reinforced concrete manhole Type 1- 1200x1500x1200mm [0.67]; Reinforced concrete manhole Type 2- 1200x1500x1200mm [2.01] | 45,560 |  | A7570 |  | L04 |

| ID | WBS | Activity | Duration | Start | Finish | Predecessors | Complete | Planned start | Planned finish | Total float | Free float | Resources | Cost | Actual cost | Mapping Sheet Activity ID | JEDDAH 1 - Area Name | % A |
| --- | --- | --- | --- | --- | --- | --- | --- | --- | --- | --- | --- | --- | --- | --- | --- | --- | --- |
|  | 11 | **CCTV feeding system and GSM** |  | 2027-07-27 | 2027-10-07 |  |  |  |  |  |  |  |  |  |  |  |  |
| CON-LEG101-LR-8600 |  | Excavation works for Low Voltage Cables for CCTV feeding system and GSM [Local – 04 ] | 12d | 2027-07-27 | 2027-08-09 | CON-LEG101-LR-8880, CON-LEG101-EN-3290, CON-LEG101-EN-3440, CON-LEG101-LR-8810 |  |  |  | -46.4d | 0d | Excavator [48 h]; Truck [48 h]; Labor [200 h]; Driver [50 h]; Eq. Operator [50 h]; Duct bank for (1) cables [33.5] | 8,040 |  | A6380 | L04 |  |
| CON-LEG101-LR-8670 |  | Installation of Low Voltage Cables for CCTV feeding system and GSM [Local – 04 ] | 13d | 2027-08-10 | 2027-08-24 | CON-LEG101-LR-8600, CON-LEG101-PR-1900 |  |  |  | -46.4d | 0d | Excavator [48 h]; Truck [48 h]; Bucket [48 h]; Compactor [48 h]; Labor [100 h]; Skilled Labor [50 h]; Driver [50 h]; Eq. Operator [150 h]; Electrician [100 h]; Stranded Copper wire, , 3xC,2 mm² XLPE/PVC [23.45]; Stranded armored Cables, Copper, 4C,35mm² XLPE/SWA /PVC [83.08]; Stranded armored Cables, Copper, 4xC16mm² XLPE /SWA/PVC [314.9]; Single Core Cable, Copper 1C,16mm² CU/PVC For Earth [83.08]; Single Core Cable, Copper 1C,10mm² CU/PVC For Earth [314.9] | 37,252 |  | A6460 | L04 |  |
| CON-LEG101-LR-9490 |  | Installation of 8POE ports Industrial Switches for remote poles [Local – 04 ] | 7d | 2027-08-25 | 2027-09-01 | CON-LEG101-LR-8670, CON-LEG101-PR-3410 |  |  |  | -46.4d | 0d | Truck [48 h]; Bucket [48 h]; Compactor [48 h]; Labor [50 h]; Driver [50 h]; Eq. Operator [100 h]; Carpenter [50 h]; Steel Fixer [50 h]; Mason [50 h]; Electrician [50 h]; 8POE ports Industrial Switches for remote poles |  |  | A7810 | L04 |  |
| CON-LEG101-LR-9660 |  | Installation of IP Outdoor CCTV POE Camera,5 MP, Metal Housing [Local – 04 ] | 8d | 2027-09-02 | 2027-09-11 | CON-LEG101-LR-9490, CON-LEG101-PR-3610 |  |  |  | -46.4d | 0d | Truck [48 h]; Bucket [48 h]; Compactor [48 h]; Labor [50 h]; Driver [50 h]; Eq. Operator [100 h]; Carpenter [50 h]; Steel Fixer [50 h]; Mason [50 h]; Electrician [50 h]; IP Outdoor CCTV POE Camera,5 MP, Metal Housing [1.34] | 6,700 |  | A8140 | L04 |  |
| CON-LEG101-LR-9740 |  | Installation of Outdoor PTZ IP66 [Local – 04 ] | 10d | 2027-09-12 | 2027-09-22 | CON-LEG101-LR-9660, CON-LEG101-PR-3650 |  |  |  | -46.4d | 0d | Truck [48 h]; Bucket [48 h]; Compactor [48 h]; Labor [50 h]; Driver [50 h]; Eq. Operator [100 h]; Carpenter [50 h]; Steel Fixer [50 h]; Mason [50 h]; Electrician [50 h]; "Outdoor PTZ with IR, HDTV 1080 and 31x optical, 12x digital, total 372x zoom, H264/265 with Motion JPEG. [0.67] | 23,450 |  | A8250 | L04 |  |
| CON-LEG101-LR-9990 |  | Installation of Short Range wireless point to point wireless bridge [Local – 04 ] | 12d | 2027-09-25 | 2027-10-07 | CON-LEG101-LR-9740, CON-LEG101-PR-3910 |  |  |  | -46.4d | 0d | Truck [48 h]; Bucket [48 h]; Compactor [48 h]; Labor [50 h]; Driver [50 h]; Eq. Operator [100 h]; Carpenter [50 h]; Steel Fixer [50 h]; Mason [50 h]; Electrician [50 h]; Short Range wireless point to point wireless bridge [1.34] | 17,420 |  | A8760 | L04 |  |
|  | 12 | **Earthing System** |  | 2027-10-09 | 2027-10-17 |  |  |  |  |  |  |  |  |  |  |  |  |
| CON-LEG101-LR-15160 |  | Installation of Earthing for Distribution panels,SL feeder pillars, KWH, Unit substations and RMU [Local – 04 ] | 8d | 2027-10-09 | 2027-10-17 | CON-LEG101-LR-7450, CON-LEG101-LR-7530, CON-LEG101-LR-9990, CON-LEG101-LR-9740, CON-LEG101-LR-9660, CON-LEG101-LR-15170, CON-LEG101-LR-8380 |  |  |  | -46.4d | 0d | Earthing for Distribution panels,SL feeder pillars, KWH, Unit substations and RMU; Crane [48 h]; Labor [100 h]; Eq. Operator [50 h]; Electrician [100 h] |  |  | A5850 | L04 |  |
|  | 9 | **Road Lighting** |  | 2027-06-28 | 2027-09-09 |  |  |  |  |  |  |  |  |  |  |  |  |
| CON-LEG101-LR-8130 |  | Installation of Lighting poles [Local – 04 ] | 18d | 2027-06-28 | 2027-07-19 | CON-LEG101-PR-1950, CON-LEG101-LR-7830, CON-LEG101-LR-8120, CON-LEG101-PR-1910 |  |  |  | -105.5d | 0d | Lighting poles with 1 arm, height of (8 ) meters, including the power distribution box, cables, and RCC foundation. [30.82]; Excavator [48 h]; Truck [48 h]; Crane [48 h]; Labor [150 h]; Driver [50 h]; Eq. Operator [100 h]; Carpenter [50 h]; Steel Fixer [50 h]; Mason [50 h]; Electrician [150 h] | 104,788 |  | A5580 | L04 |  |
| CON-LEG101-LR-8230 |  | Installation of Street Lighting Luminaire [Local – 04 ] | 6d | 2027-07-19 | 2027-07-26 | CON-LEG101-LR-8130, CON-LEG101-PR-1920 |  |  |  | -10.9d | 12.5d | Street Lighting( LED) Luminous efficacy ? 120Lum/w complete with control gear and lamp, (100) WATT. Max. [30.82]; Crane [48 h]; Labor [150 h]; Skilled Labor [100 h]; Eq. Operator [50 h]; Electrician [150 h] | 30,820 |  | A5720 | L04 |  |
| CON-LEG101-LR-7450 |  | Installation of Unit Substation Including concrete foundations and fencing [Local – 04 ] | 7d | 2027-08-10 | 2027-08-17 | CON-LEG101-LR-8130, CON-LEG101-LR-8600, CON-LEG101-EN-3310, CON-LEG101-EN-3320, CON-LEG101-EN-3330, CON-LEG101-EN-3360, CON-LEG101-PR-1890, CON-LEG101-LR-8230 |  |  |  | -23.4d | 0d | Unit Substation 13.8/0.4 K V, 500kVA ,Including concrete foundations and fencing, According to the specifications and standards of SEC; Excavator [48 h]; Truck [48 h]; Bucket [48 h]; Compactor [48 h]; Labor [100 h]; Skilled Labor [50 h]; Driver [50 h]; Eq. Operator [150 h]; Electrician [100 h] |  |  | A4590 | L04 |  |
| CON-LEG101-LR-7530 |  | Installation of Ring Main Unit RMU [Local – 04 ] | 14d | 2027-08-18 | 2027-09-02 | CON-LEG101-LR-8130, CON-LEG101-LR-7450, CON-LEG101-PR-2510 |  |  |  | -23.4d | 0d | Ring Main Unit RMU, 13.8KV, According to the specifications and standards of SEC; Excavator [48 h]; Truck [48 h]; Bucket [48 h]; Compactor [48 h]; Labor [100 h]; Skilled Labor [50 h]; Driver [50 h]; Eq. Operator [150 h]; Electrician [100 h] |  |  | A4700 | L04 |  |
| CON-LEG101-LR-8380 |  | Installation of Earthing for Streetlighting feeders for every end pole circuits. [Local – 04 ] | 6d | 2027-09-04 | 2027-09-09 | CON-LEG101-LR-7450, CON-LEG101-LR-7530, CON-LEG101-PR-1480, CON-LEG101-LR-8230, CON-LEG101-PR-1310 |  |  |  | -23.4d | 23d | Earthing for Streetlighting feeders for every end pole circuits.; Crane [48 h]; Labor [100 h]; Eq. Operator [50 h]; Carpenter [100 h]; Electrician [200 h] |  |  | A5940 | L04 |  |
|  | 5 | **Local – 05** |  | 2026-03-15 | 2027-08-05 |  |  |  |  |  |  |  |  |  |  |  |  |
|  | 5 | **TSE Network** |  | 2026-03-24 | 2026-12-12 |  |  |  |  |  |  |  |  |  |  |  |  |
|  | 2 | **Pipe Work** |  | 2026-03-24 | 2026-06-23 |  |  |  |  |  |  |  |  |  |  |  |  |
| CON-LEG101-LR-1370 |  | Excavation for TSE Network [Local – 05 ] | 12d | 2026-03-24 A | 2026-04-16 A | CON-LEG101-LR-3460, CON-LEG101-LR-3550, CON-LEG101-LR-11470, CON-LEG101-LR-4260, CON-LEG101-LR-2830, CON-LEG101-EN-1720, CON-LEG101-EN-1730, CON-LEG101-EN-1740, CON-LEG101-EN-1810 | 100% | 2026-06-30 | 2026-07-14 |  |  | Excavator [36 h]; Water Tanker [34 h]; Truck [96 h]; Crane [48 h]; Labor [200 h]; Driver [150 h]; Eq. Operator [100 h]; Piping TSE Network - 110mm Diameter Depth: 0.00 m - 1.50 m. [6.9]; Piping TSE Network - 110mm Diameter Depth: 1.51m - 2.50m [10.14]; Piping TSE Network - 160mm Diameter Depth: 0.00 m - 1.50 m. [18.26]; Piping TSE Network - 160mm Diameter Depth: 1.51m - 2.50m [54.14]; Piping TSE Network - 200mm Diameter Depth: 0.00 m - 1.50 m. [10.35]; Piping TSE Network - 200mm Diameter Depth: 1.51m - 2.50m [19.95]; Piping TSE Network - 200mm Diameter Depth: 2.51m - 3.50m; Piping TSE Network - 200mm Diameter Depth exceeds 3.50m; Piping TSE Network - 110mm Diameter Depth exceeds 2.50m; Piping TSE Network - 160mm Diameter Depth exceeds 2.50m; Piping TSE Network - 250mm Diameter Depth: 0.00 m - 1.50 m.; Piping TSE Network - 250mm Diameter Depth: 1.51m - 2.50m; Piping TSE Network - 250mm Diameter Depth exceeds 2.50m | 33,306.5 | 33,306.5 | A11000 | L05 | 1 |
| CON-LEG101-LR-1480 |  | Granular bedding for TSE Network [Local – 05 ] | 9d | 2026-03-30 A | 2026-04-18 A | CON-LEG101-LR-1370 | 100% | 2026-07-06 | 2026-07-16 |  |  | Loader [48 h]; Truck [48 h]; Driver [50 h]; Eq. Operator [50 h]; Piping TSE Network - 110mm Diameter Depth: 0.00 m - 1.50 m. [1.73]; Piping TSE Network - 110mm Diameter Depth: 1.51m - 2.50m [2.54]; Piping TSE Network - 160mm Diameter Depth: 0.00 m - 1.50 m. [4.56]; Piping TSE Network - 160mm Diameter Depth: 1.51m - 2.50m [13.53]; Piping TSE Network - 200mm Diameter Depth: 0.00 m - 1.50 m. [2.59]; Piping TSE Network - 200mm Diameter Depth: 1.51m - 2.50m [4.99]; Piping TSE Network - 200mm Diameter Depth: 2.51m - 3.50m; Piping TSE Network - 200mm Diameter Depth exceeds 3.50m; Piping TSE Network - 110mm Diameter Depth exceeds 2.50m; Piping TSE Network - 160mm Diameter Depth exceeds 2.50m; Piping TSE Network - 250mm Diameter Depth: 0.00 m - 1.50 m.; Piping TSE Network - 250mm Diameter Depth: 1.51m - 2.50m; Piping TSE Network - 250mm Diameter Depth exceeds 2.50m | 8,327.7 | 8,327.7 | A11120 | L05 | 1 |
| CON-LEG101-LR-1590 |  | Installation of Pipe for TSE Network [Local – 05 ] | 15d | 2026-04-01 A | 2026-04-20 A | CON-LEG101-PR-2590, CON-LEG101-LR-1480, CON-LEG101-PR-1690 | 100% | 2026-07-16 | 2026-08-03 |  |  | Excavator [48 h]; Crane [48 h]; Labor [230 h]; Skilled Labor [100 h]; Eq. Operator [100 h]; Plumber [50 h]; Pipe Fitter [50 h]; Piping TSE Network - 110mm Diameter Depth: 0.00 m - 1.50 m. [15.53]; Piping TSE Network - 110mm Diameter Depth: 1.51m - 2.50m [22.83]; Piping TSE Network - 160mm Diameter Depth: 0.00 m - 1.50 m. [41.08]; Piping TSE Network - 160mm Diameter Depth: 1.51m - 2.50m [121.81]; Piping TSE Network - 200mm Diameter Depth: 0.00 m - 1.50 m. [23.29]; Piping TSE Network - 200mm Diameter Depth: 1.51m - 2.50m [44.9]; Piping TSE Network - 200mm Diameter Depth: 2.51m - 3.50m; Piping TSE Network - 200mm Diameter Depth exceeds 3.50m; Piping TSE Network - 110mm Diameter Depth exceeds 2.50m; Piping TSE Network - 160mm Diameter Depth exceeds 2.50m; Piping TSE Network - 250mm Diameter Depth: 0.00 m - 1.50 m.; Piping TSE Network - 250mm Diameter Depth: 1.51m - 2.50m; Piping TSE Network - 250mm Diameter Depth exceeds 2.50m | 74,946.7 | 74,946.7 | A11240 | L05 | 1 |
| CON-LEG101-LR-1700 |  | Testing for TSE Network [Local – 05 ] | 9d | 2026-04-27 A | 2026-04-28 A | CON-LEG101-LR-1590 | 100% | 2026-07-07 | 2026-07-18 |  |  | Labor [200 h]; Skilled Labor [100 h]; Pipe Fitter [100 h]; Piping TSE Network - 110mm Diameter Depth: 0.00 m - 1.50 m. [3.45]; Piping TSE Network - 110mm Diameter Depth: 1.51m - 2.50m [5.07]; Piping TSE Network - 160mm Diameter Depth: 0.00 m - 1.50 m. [9.13]; Piping TSE Network - 160mm Diameter Depth: 1.51m - 2.50m [27.07]; Piping TSE Network - 200mm Diameter Depth: 0.00 m - 1.50 m. [5.18]; Piping TSE Network - 200mm Diameter Depth: 1.51m - 2.50m [9.98]; Piping TSE Network - 200mm Diameter Depth: 2.51m - 3.50m; Piping TSE Network - 200mm Diameter Depth exceeds 3.50m; Piping TSE Network - 110mm Diameter Depth exceeds 2.50m; Piping TSE Network - 160mm Diameter Depth exceeds 2.50m; Piping TSE Network - 250mm Diameter Depth: 0.00 m - 1.50 m.; Piping TSE Network - 250mm Diameter Depth: 1.51m - 2.50m; Piping TSE Network - 250mm Diameter Depth exceeds 2.50m | 16,656.1 | 16,656.1 | A11360 | L05 | 1 |
| CON-LEG101-LR-1820 |  | Concrete encasement, pipe dia 110 mm [Local – 05 ] | 2d | 2026-04-29 A | 2026-06-20 A | CON-LEG101-LR-1700, CON-LEG101-EN-3450, CON-LEG101-PR-1430 | 100% | 2026-07-18 | 2026-07-20 |  |  | Labor [300 h]; Carpenter [50 h]; Mason [100 h]; Piping TSE Network - Concrete encasement, pipe dia 110 mm [4.56] | 1,596 | 1,596 | A11510 | L05 | 1 |
| CON-LEG101-LR-1920 |  | Granular Surround for TSE Network [Local – 05 ] | 9d | 2026-04-30 A | 2026-06-21 A | CON-LEG101-LR-1820, CON-LEG101-EN-3450 | 100% | 2026-07-20 | 2026-07-30 |  |  | Loader [48 h]; Truck [200 h]; Driver [200 h]; Eq. Operator [50 h]; Piping TSE Network - 110mm Diameter Depth: 0.00 m - 1.50 m. [1.73]; Piping TSE Network - 110mm Diameter Depth: 1.51m - 2.50m [2.54]; Piping TSE Network - 160mm Diameter Depth: 0.00 m - 1.50 m. [4.56]; Piping TSE Network - 160mm Diameter Depth: 1.51m - 2.50m [13.53]; Piping TSE Network - 200mm Diameter Depth: 0.00 m - 1.50 m. [2.59]; Piping TSE Network - 200mm Diameter Depth: 1.51m - 2.50m [4.99]; Piping TSE Network - 200mm Diameter Depth: 2.51m - 3.50m; Piping TSE Network - 200mm Diameter Depth exceeds 3.50m; Piping TSE Network - 110mm Diameter Depth exceeds 2.50m; Piping TSE Network - 160mm Diameter Depth exceeds 2.50m; Piping TSE Network - 250mm Diameter Depth: 0.00 m - 1.50 m.; Piping TSE Network - 250mm Diameter Depth: 1.51m - 2.50m; Piping TSE Network - 250mm Diameter Depth exceeds 2.50m | 8,327.7 | 8,327.7 | A11610 | L05 | 1 |
| CON-LEG101-LR-2030 |  | Installation of Micron Marker Magnetic Tape [Local – 05 ] | 4d | 2026-05-02 A | 2026-06-22 A | CON-LEG101-LR-1920 | 100% | 2026-07-30 | 2026-08-04 |  |  | Piping TSE Network - 200mm Diameter Depth: 2.51m - 3.50m; Piping TSE Network - 200mm Diameter Depth exceeds 3.50m; Piping TSE Network - 110mm Diameter Depth exceeds 2.50m; Piping TSE Network - 160mm Diameter Depth exceeds 2.50m; Piping TSE Network - 250mm Diameter Depth: 0.00 m - 1.50 m.; Piping TSE Network - 250mm Diameter Depth: 1.51m - 2.50m; Piping TSE Network - 250mm Diameter Depth exceeds 2.50m; Labor [200 h]; Piping TSE Network - 110mm Diameter Depth: 0.00 m - 1.50 m. [1.73]; Piping TSE Network - 110mm Diameter Depth: 1.51m - 2.50m [2.54]; Piping TSE Network - 160mm Diameter Depth: 0.00 m - 1.50 m. [4.56]; Piping TSE Network - 160mm Diameter Depth: 1.51m - 2.50m [13.53]; Piping TSE Network - 200mm Diameter Depth: 0.00 m - 1.50 m. [2.59]; Piping TSE Network - 200mm Diameter Depth: 1.51m - 2.50m [4.99] | 8,327.7 | 8,327.7 | A11730 | L05 | 1 |
| CON-LEG101-LR-2140 |  | Backfilling to Subgrade Elevation [Local – 05 ] | 18d | 2026-05-03 A | 2026-06-23 A | CON-LEG101-LR-2030, CON-LEG101-EN-3440 | 100% | 2026-08-04 | 2026-08-25 |  |  | Piping TSE Network - 200mm Diameter Depth: 2.51m - 3.50m; Piping TSE Network - 200mm Diameter Depth exceeds 3.50m; Piping TSE Network - 110mm Diameter Depth exceeds 2.50m; Piping TSE Network - 160mm Diameter Depth exceeds 2.50m; Piping TSE Network - 250mm Diameter Depth: 0.00 m - 1.50 m.; Piping TSE Network - 250mm Diameter Depth: 1.51m - 2.50m; Piping TSE Network - 250mm Diameter Depth exceeds 2.50m; Excavator [48 h]; Water Tanker [48 h]; Road Roller [48 h]; Bucket [48 h]; Compactor [48 h]; Labor [200 h]; Driver [50 h]; Eq. Operator [200 h]; Piping TSE Network - 110mm Diameter Depth: 0.00 m - 1.50 m. [3.45]; Piping TSE Network - 110mm Diameter Depth: 1.51m - 2.50m [5.07]; Piping TSE Network - 160mm Diameter Depth: 0.00 m - 1.50 m. [9.13]; Piping TSE Network - 160mm Diameter Depth: 1.51m - 2.50m [27.07]; Piping TSE Network - 200mm Diameter Depth: 0.00 m - 1.50 m. [5.18]; Piping TSE Network - 200mm Diameter Depth: 1.51m - 2.50m [9.98] | 16,656.1 | 16,656.1 | A11850 | L05 | 1 |

| ID | WBS | Activity | Duration | Start | Finish | Predecessors | Complete | Remaining | Planned start | Planned finish | Total float | Free float | Resources | Cost | Actual cost | Mapping Sheet Activity ID | % A | JEDDAH 1 - Area Name |
| --- | --- | --- | --- | --- | --- | --- | --- | --- | --- | --- | --- | --- | --- | --- | --- | --- | --- | --- |
|  | 1 | **Valves/Chamber** |  | 2026-04-04 | 2026-12-12 |  |  |  |  |  |  |  |  |  |  |  |  |  |
| CON-LEG101-LR-2740 |  | Installation of Air Valve chambers [Local – 05 ] | 21d | 2026-04-04 A | 2026-12-12 | CON-LEG101-LR-1590, CON-LEG101-LR-2660, CON-LEG101-PR-1970 | 97% | 0.63d | 2026-08-18 | 2026-09-12 | 175.84d | 0d | Excavator [48 h]; Labor [100 h]; Skilled Labor [50 h]; Eq. Operator [50 h]; Pipe Fitter [50 h]; Piping TSE Network - Air valve chamber; on less than 315 mm diameter pipeline [1.34] | 53,600 | 51,994.13 | A12860 | 0.97 | L05 |
| CON-LEG101-LR-2250 |  | Installation of Gate (Sluice) valves (Direct buried) [Local – 05 ] | 14d | 2026-04-25 A | 2026-08-08 A | CON-LEG101-LR-2740, CON-LEG101-LR-1590, CON-LEG101-PR-1970, CON-LEG101-LR-1180 | 100% |  | 2026-12-21 | 2027-01-06 |  |  | Excavator [48 h]; Labor [100 h]; Skilled Labor [50 h]; Eq. Operator [50 h]; Pipe Fitter [50 h]; Piping TSE Network - Gate valves, on pipe with diameter 110 mm [7.37]; Piping TSE Network - Gate valves, on pipe with diameter 160 mm [0.67]; Piping TSE Network - Gate valves, on pipe with diameter 200 mm [0.67] | 30,485 | 30,485 | A12060 | 1 | L05 |
| CON-LEG101-LR-2360 |  | Installation of Wash-out Valves [Local – 05 ] | 14d | 2026-04-25 A | 2026-08-08 A | CON-LEG101-LR-2660, CON-LEG101-LR-2250, CON-LEG101-PR-1970 | 100% |  | 2027-01-06 | 2027-01-23 |  |  | Excavator [48 h]; Labor [100 h]; Skilled Labor [50 h]; Eq. Operator [50 h]; Pipe Fitter [50 h]; Piping TSE Network - Wash out valve, on pipes with diameter 110-400 mm [1.34] | 16,080 | 16,080 | A12270 | 1 | L05 |
| CON-LEG101-LR-2440 |  | Installation of Air Valves [Local – 05 ] | 14d | 2026-04-25 A | 2026-08-08 A | CON-LEG101-LR-2740, CON-LEG101-LR-2360, CON-LEG101-PR-1970 | 100% |  | 2027-01-23 | 2027-02-08 |  |  | Excavator [48 h]; Labor [100 h]; Skilled Labor [50 h]; Eq. Operator [50 h]; Pipe Fitter [50 h]; Piping TSE Network - Air valve complete with gate valves, on pipes with diameter less than 315 mm. [1.34] | 12,060 | 12,060 | A12390 | 1 | L05 |
| CON-LEG101-LR-2520 |  | Installation of Fire Hydrant [Local – 05 ] | 11d | 2026-04-25 A | 2026-09-30 A | CON-LEG101-LR-2140, CON-LEG101-LR-2440, CON-LEG101-PR-2470 | 100% |  | 2027-02-08 | 2027-02-27 |  |  | Piping TSE Network - 3-outlet fire hydrant (2 x 2.5 inch and 1 x 4.5 inch) in the form of a separate dry vacuum cylinder [6.03]; Excavator [48 h]; Labor [150 h]; Skilled Labor [50 h]; Eq. Operator [50 h]; Mason [50 h]; Pipe Fitter [50 h] | 54,270 | 54,270 | A12510 | 0.97 | L05 |
| CON-LEG101-LR-2660 |  | Installation of Wash out chambers [Local – 05 ] | 21d | 2026-04-30 A | 2026-12-10 | CON-LEG101-LR-1590, CON-LEG101-PR-1970 | 97% | 0.63d | 2026-07-06 | 2026-07-30 | 175.84d | 0d | Excavator [48 h]; Labor [100 h]; Skilled Labor [50 h]; Eq. Operator [50 h]; Pipe Fitter [50 h]; Piping TSE Network - Wash out valve chamber; on 110-400 mm diameter pipeline [1.34] | 53,600 | 51,994.13 | A12740 | 0.97 | L05 |
|  | 6 | **Public Water Utility Distribution** |  | 2026-03-24 | 2026-12-13 |  |  |  |  |  |  |  |  |  |  |  |  |  |
|  | 2 | **Pipe Work** |  | 2026-03-24 | 2026-05-03 |  |  |  |  |  |  |  |  |  |  |  |  |  |
| CON-LEG101-LR-10100 |  | Excavation for Public Water Utility Distribution Piping [Local – 05 ] | 13d | 2026-03-24 A | 2026-04-21 A | CON-LEG101-LR-2140, CON-LEG101-LR-3460, CON-LEG101-LR-4260, CON-LEG101-EN-1690, CON-LEG101-EN-1700, CON-LEG101-EN-1710, CON-LEG101-EN-3440, CON-LEG101-LR-2740 | 100% |  | 2026-09-30 | 2026-10-15 |  |  | Public Water - 110mm Diameter Depth: 0.00 m - 1.50 m. [2.89]; Public Water - 110mm Diameter Depth: 1.51 m - 2.50 m. [1.88]; Public Water - 160mm Diameter Depth: 1.51m - 2.50m [58.44]; Excavator [48 h]; Water Tanker [48 h]; Truck [96 h]; Crane [48 h]; Labor [300 h]; Driver [300 h]; Eq. Operator [100 h]; Public Water - 160mm Diameter Depth: 0.00 m - 1.50 m. [47.17]; Public Water - 110mm Diameter Depth exceeds 2.50m; Public Water - 200mm Diameter Depth: 0.00m -1.50m; Public Water - 160mm Diameter Depth exceeds 2.50m; Public Water - 200mm Diameter Depth: 1.51m - 2.50m; Public Water - 200mm Diameter Depth exceeds 2.50m | 28,937.2 | 28,937.2 | A9080 | 1 | L05 |
| CON-LEG101-LR-10200 |  | Granular bedding for Public Water Utility Distribution Piping [Local – 05 ] | 10d | 2026-03-30 A | 2026-04-22 A | CON-LEG101-LR-10100 | 100% |  | 2026-09-29 | 2026-10-11 |  |  | Public Water - 110mm Diameter Depth: 0.00 m - 1.50 m. [0.72]; Public Water - 110mm Diameter Depth: 1.51 m - 2.50 m. [0.47]; Public Water - 160mm Diameter Depth: 1.51m - 2.50m [14.61]; Loader [48 h]; Truck [48 h]; Driver [50 h]; Eq. Operator [50 h]; Public Water - 160mm Diameter Depth: 0.00 m - 1.50 m. [11.79]; Public Water - 110mm Diameter Depth exceeds 2.50m; Public Water - 200mm Diameter Depth: 0.00m -1.50m; Public Water - 160mm Diameter Depth exceeds 2.50m; Public Water - 200mm Diameter Depth: 1.51m - 2.50m; Public Water - 200mm Diameter Depth exceeds 2.50m | 7,233.3 | 7,233.3 | A9200 | 1 | L05 |
| CON-LEG101-LR-10300 |  | Installation of Pipe for Public Water Utility Distribution Piping [Local – 05 ] | 14d | 2026-04-01 A | 2026-04-23 A | CON-LEG101-PR-4010, CON-LEG101-LR-10200, CON-LEG101-PR-1660 | 100% |  | 2026-10-11 | 2026-10-27 |  |  | Public Water - 110mm Diameter Depth: 0.00 m - 1.50 m. [6.49]; Public Water - 110mm Diameter Depth: 1.51 m - 2.50 m. [4.23]; Public Water - 160mm Diameter Depth: 1.51m - 2.50m [131.5]; Excavator [48 h]; Crane [48 h]; Labor [150 h]; Skilled Labor [100 h]; Eq. Operator [100 h]; Plumber [50 h]; Pipe Fitter [50 h]; Public Water - 160mm Diameter Depth: 0.00 m - 1.50 m. [106.13]; Public Water - 110mm Diameter Depth exceeds 2.50m; Public Water - 200mm Diameter Depth: 0.00m -1.50m; Public Water - 160mm Diameter Depth exceeds 2.50m; Public Water - 200mm Diameter Depth: 1.51m - 2.50m; Public Water - 200mm Diameter Depth exceeds 2.50m | 65,108.9 | 65,108.9 | A9320 | 1 | L05 |
| CON-LEG101-LR-10400 |  | Testing for Public Water Utility Distribution Piping [Local – 05 ] | 10d | 2026-04-27 A | 2026-04-28 A | CON-LEG101-LR-10300 | 100% |  | 2026-08-25 | 2026-09-06 |  |  | Public Water - 110mm Diameter Depth: 0.00 m - 1.50 m. [1.44]; Public Water - 110mm Diameter Depth: 1.51 m - 2.50 m. [0.94]; Public Water - 160mm Diameter Depth: 1.51m - 2.50m [29.23]; Labor [200 h]; Skilled Labor [100 h]; Pipe Fitter [100 h]; Public Water - 160mm Diameter Depth: 0.00 m - 1.50 m. [23.58]; Public Water - 110mm Diameter Depth exceeds 2.50m; Public Water - 200mm Diameter Depth: 0.00m -1.50m; Public Water - 160mm Diameter Depth exceeds 2.50m; Public Water - 200mm Diameter Depth: 1.51m - 2.50m; Public Water - 200mm Diameter Depth exceeds 2.50m | 14,469.6 | 14,469.6 | A9450 | 1 | L05 |
| CON-LEG101-LR-10500 |  | Concrete encasement, pipe dia 110 mm [Local – 05 ] | 7d | 2026-04-29 A | 2026-04-29 A | CON-LEG101-LR-10400, CON-LEG101-EN-3450, CON-LEG101-PR-1430 | 100% |  | 2026-09-06 | 2026-09-14 |  |  | Public Water - Concrete encasement, pipe dia 110 mm [12.86]; Labor [200 h]; Carpenter [50 h]; Mason [100 h] | 4,501 | 4,501 | A9600 | 1 | L05 |
| CON-LEG101-LR-10600 |  | Granular Surround for Public Water Utility Distribution Piping [Local – 05 ] | 10d | 2026-04-30 A | 2026-04-30 A | CON-LEG101-LR-10500, CON-LEG101-EN-3450 | 100% |  | 2026-09-14 | 2026-09-27 |  |  | Public Water - 110mm Diameter Depth: 0.00 m - 1.50 m. [0.72]; Public Water - 110mm Diameter Depth: 1.51 m - 2.50 m. [0.47]; Public Water - 160mm Diameter Depth: 1.51m - 2.50m [14.61]; Loader [48 h]; Truck [48 h]; Driver [50 h]; Eq. Operator [50 h]; Public Water - 160mm Diameter Depth: 0.00 m - 1.50 m. [11.79]; Public Water - 110mm Diameter Depth exceeds 2.50m; Public Water - 200mm Diameter Depth: 0.00m -1.50m; Public Water - 160mm Diameter Depth exceeds 2.50m; Public Water - 200mm Diameter Depth: 1.51m - 2.50m; Public Water - 200mm Diameter Depth exceeds 2.50m | 7,233.3 | 7,233.3 | A9710 | 1 | L05 |
| CON-LEG101-LR-10700 |  | Installation of Micron Marker Magnetic Tape [Local – 05 ] | 3d | 2026-05-02 A | 2026-05-02 A | CON-LEG101-LR-10600 | 100% |  | 2026-09-27 | 2026-09-30 |  |  | Public Water - 110mm Diameter Depth: 0.00 m - 1.50 m. [0.72]; Public Water - 110mm Diameter Depth: 1.51 m - 2.50 m. [0.47]; Public Water - 160mm Diameter Depth: 1.51m - 2.50m [14.61]; Labor [100 h]; Public Water - 160mm Diameter Depth: 0.00 m - 1.50 m. [11.79]; Public Water - 110mm Diameter Depth exceeds 2.50m; Public Water - 200mm Diameter Depth: 0.00m -1.50m; Public Water - 160mm Diameter Depth exceeds 2.50m; Public Water - 200mm Diameter Depth: 1.51m - 2.50m; Public Water - 200mm Diameter Depth exceeds 2.50m | 7,233.3 | 7,233.3 | A9830 | 1 | L05 |
| CON-LEG101-LR-10800 |  | Backfilling to Subgrade Elevation [Local – 05 ] | 10d | 2026-05-03 A | 2026-05-03 A | CON-LEG101-LR-10700, CON-LEG101-EN-3440 | 100% |  | 2026-09-30 | 2026-10-12 |  |  | Public Water - 110mm Diameter Depth: 0.00 m - 1.50 m. [1.44]; Public Water - 110mm Diameter Depth: 1.51 m - 2.50 m. [0.94]; Public Water - 160mm Diameter Depth: 1.51m - 2.50m [29.23]; Excavator [48 h]; Water Tanker [48 h]; Road Roller [48 h]; Bucket [48 h]; Compactor [48 h]; Labor [100 h]; Driver [50 h]; Eq. Operator [200 h]; Public Water - 160mm Diameter Depth: 0.00 m - 1.50 m. [23.58]; Public Water - 110mm Diameter Depth exceeds 2.50m; Public Water - 200mm Diameter Depth: 0.00m -1.50m; Public Water - 160mm Diameter Depth exceeds 2.50m; Public Water - 200mm Diameter Depth: 1.51m - 2.50m; Public Water - 200mm Diameter Depth exceeds 2.50m | 14,469.6 | 14,469.6 | A9950 | 1 | L05 |
|  | 1 | **Valves/Chamber** |  | 2026-04-25 | 2026-12-13 |  |  |  |  |  |  |  |  |  |  |  |  |  |
| CON-LEG101-LR-1060 |  | Installation of Gate (Sluice) valves (Direct buried) [Local – 05 ] | 10d | 2026-04-25 A | 2026-08-08 A | CON-LEG101-LR-1240, CON-LEG101-LR-1240 SS, CON-LEG101-LR-10300, CON-LEG101-PR-1960 | 100% |  | 2026-09-13 | 2026-09-26 |  |  | Public Water - Gate valves, on pipe with diameter 110 mm [6.03]; Public Water - Gate valves, on pipe with diameter 160 mm [2.01]; Public Water - Gate valves, on pipe with diameter 200 mm [0.67]; Excavator [48 h]; Labor [100 h]; Skilled Labor [50 h]; Eq. Operator [50 h]; Pipe Fitter [50 h] | 32,495 | 32,495 | A10150 | 1 | L05 |
| CON-LEG101-LR-1140 |  | Installation of Wash-out Valves [Local – 05 ] | 10d | 2026-04-25 A | 2026-08-08 A | CON-LEG101-LR-1240, CON-LEG101-LR-1060, CON-LEG101-PR-1960 | 100% |  | 2026-09-26 | 2026-10-07 |  |  | Public Water - Wash out valve, on pipes with diameter 110-400 mm; Excavator [48 h]; Labor [100 h]; Skilled Labor [50 h]; Eq. Operator [50 h]; Pipe Fitter [50 h] |  |  | A10310 | 1 | L05 |
| CON-LEG101-LR-1240 |  | Installation of Wash out chambers [Local – 05 ] | 20d | 2026-04-30 A | 2026-12-13 | CON-LEG101-LR-10300, CON-LEG101-PR-1960 | 95% | 1d | 2026-08-24 | 2026-09-16 | 208.44d | 0d | Public Water - Wash out valve chamber; on 110-400 mm diameter pipeline; Excavator [48 h]; Labor [100 h]; Skilled Labor [50 h]; Eq. Operator [50 h]; Pipe Fitter [50 h] |  |  | A10550 | 0.95 | L05 |
|  | 1 | **Electrical Works** |  | 2026-05-02 | 2027-06-16 |  |  |  |  |  |  |  |  |  |  |  |  |  |
|  | 3 | **Low Voltage** |  | 2026-05-02 | 2027-06-16 |  |  |  |  |  |  |  |  |  |  |  |  |  |
| CON-LEG101-LR-8040 |  | Installation of Low Voltage Cables Duct Banks [Local – 05 ] | 6d | 2026-05-02 A | 2026-05-07 A | CON-LEG101-LR-7840, CON-LEG101-PR-1320 | 100% |  | 2027-01-10 | 2027-01-16 |  |  | Truck [48 h]; Bucket [48 h]; Compactor [48 h]; Labor [50 h]; Driver [50 h]; Eq. Operator [100 h]; Carpenter [50 h]; Steel Fixer [50 h]; Mason [50 h]; Electrician [50 h]; Duct bank for (3) cables [4.02]; Duct bank for (1) cables [26.13]; Duct bank for (2) cables [10.05] | 13,567.5 | 13,567.5 | A5450 | 1 | L05 |
| CON-LEG101-LR-7840 |  | Excavation works for Low Voltage Cables [Local – 05 ] | 21d | 2026-07-30 A | 2026-08-17 A | CON-LEG101-LR-4260, CON-LEG101-LR-11470, CON-LEG101-LR-3460, CON-LEG101-LR-3550, CON-LEG101-LR-2140, CON-LEG101-LR-6940, CON-LEG101-EN-1680, CON-LEG101-EN-3440 | 100% |  | 2027-03-06 | 2027-03-29 |  |  | Excavator [96 h]; Truck [186.86 h]; Labor [400 h]; Driver [100 h]; Eq. Operator [150 h] |  |  | A5170 | 1 | L05 |
| CON-LEG101-LR-7940 |  | Installation of Low Voltage Cables [Local – 05 ] | 14d | 2026-08-02 A | 2026-08-17 A | CON-LEG101-LR-8040, CON-LEG101-LR-7840, CON-LEG101-PR-1900 | 100% |  | 2027-03-30 | 2027-04-14 |  |  | Excavator [144 h]; Truck [144 h]; Bucket [144 h]; Compactor [144 h]; Labor [300 h]; Skilled Labor [150 h]; Driver [150 h]; Eq. Operator [453.57 h]; Electrician [300 h]; Stranded armored Cables, Copper, 4C,50mm² XLPE /SWA/PVC [1.61]; Stranded armored Cables, Copper, 4C,35mm² XLPE/SWA /PVC [209.04]; Stranded armored Cables, Copper, 4xC16mm² XLPE /SWA/PVC [1366.8]; Single Core Cable, Copper 1C,16mm² CU/PVC For Earth [209.04]; Single Core Cable, Copper 1C,10mm² CU/PVC For Earth [1366.8]; Single Core Cable, Copper 1C,25mm² CU/PVC For Earth [1.61] | 124,476 | 124,476 | A5280 | 1 | L05 |
| CON-LEG101-LR-8820 |  | Installation of Earthing System [Local – 05 ] | 2d | 2027-06-15 | 2027-06-16 | CON-LEG101-LR-8040, CON-LEG101-PR-1320, CON-LEG101-LR-7940, CON-LEG101-PR-1310 |  |  |  |  | 24d | 0d | Earthing for Industrial switch poles and GSM towers; Crane [48 h]; Labor [100 h]; Eq. Operator [50 h]; Electrician [100 h] |  |  | A6690 |  | L05 |

| ID | WBS | Activity | Duration | Start | Finish | Predecessors | Complete | Remaining | Planned start | Planned finish | Total float | Free float | Resources | Cost | Actual cost | Mapping Sheet Activity ID | % A | JEDDAH 1 - Area Name |
| --- | --- | --- | --- | --- | --- | --- | --- | --- | --- | --- | --- | --- | --- | --- | --- | --- | --- | --- |
|  | 10 | **Telecommunications** |  | 2026-05-02 | 2027-06-16 |  |  |  |  |  |  |  |  |  |  |  |  |  |
| CON-LEG101-LR-8890 |  | Installation of Sand and soil encased duct banks for primary network [Local – 05 ] | 10d | 2026-05-02 A | 2026-07-04 A | CON-LEG101-LR-7840 SS, CON-LEG101-EN-3280, CON-LEG101-EN-3440 | 100% |  | 2027-01-24 | 2027-02-03 |  |  | Truck [215.2 h]; Bucket [144 h]; Compactor [144 h]; Labor [150 h]; Driver [150 h]; Eq. Operator [300 h]; Carpenter [205 h]; Steel Fixer [150 h]; Mason [150 h]; Electrician [150 h]; 6-ways ducts, 50mm diameter, (HDPE TYPE) . [444.29]; 6-ways ducts, 50mm diameter, (HDPE TYPE) + 2 x 32 mm HDPE sub-ducts [207.51] | 97,477.3 | 97,477.3 | A6830 | 1 | L05 |
| CON-LEG101-LR-8990 |  | Installation of Concrete encased duct banks for primary network [Local – 05 ] | 8d | 2026-05-02 A | 2026-05-07 A | CON-LEG101-PR-3180, CON-LEG101-PR-4020, CON-LEG101-LR-8890, CON-LEG101-PR-1430 | 100% |  | 2026-12-31 | 2027-01-09 |  |  | Truck [48 h]; Bucket [48 h]; Compactor [48 h]; Labor [50 h]; Driver [50 h]; Eq. Operator [100 h]; Carpenter [50 h]; Steel Fixer [50 h]; Mason [50 h]; Electrician [50 h]; 6-ways ducts, 50mm diameter, (HDPE TYPE) + 4 x 32 mm HDPE sub-ducts [175.1]; 6-ways ducts, 50mm diameter, (HDPE TYPE) . [68.41] | 44,324.5 | 44,324.5 | A6970 | 1 | L05 |
| CON-LEG101-LR-9290 |  | Installation of Concrete encased duct banks for for combined network of primary and secondary [Local – 05 ] | 7d | 2026-05-02 A | 2026-05-20 A | CON-LEG101-PR-3250, CON-LEG101-LR-9190, CON-LEG101-PR-1430 | 100% |  | 2027-01-27 | 2027-02-03 |  |  | Truck [48 h]; Bucket [48 h]; Compactor [48 h]; Labor [50 h]; Driver [50 h]; Eq. Operator [100 h]; Carpenter [50 h]; Steel Fixer [50 h]; Mason [50 h]; Electrician [50 h]; 6 x 32 mm HDPE sub-ducts [3.78] | 1,512 | 1,512 | A7430 | 1 | L05 |
| CON-LEG101-LR-9390 |  | Installation of Reinforced concrete manhole [Local – 05 ] | 10d | 2026-05-02 A | 2026-10-21 A | CON-LEG101-LR-9290, CON-LEG101-PR-3260, CON-LEG101-LR-8820 | 100% |  | 2027-02-06 | 2027-02-23 |  |  | Truck [48 h]; Bucket [48 h]; Compactor [48 h]; Labor [50 h]; Driver [50 h]; Eq. Operator [100 h]; Carpenter [50 h]; Steel Fixer [50 h]; Mason [50 h]; Electrician [50 h]; Reinforced concrete manhole Type 1- 1200x1500x1200mm [1.34]; Reinforced concrete manhole Type 2- 1200x1500x1200mm [4.69] | 102,510 | 102,510 | A7580 | 0.9 | L05 |
| CON-LEG101-LR-9090 |  | Installation of Sand encased duct banks for secondary network [Local – 05 ] | 8d | 2026-09-05 A | 2027-06-15 | CON-LEG101-LR-8990, CON-LEG101-EN-3440 | 90% | 0.8d | 2027-04-17 | 2027-04-25 | 24.2d | 0d | Truck [48 h]; Bucket [48 h]; Compactor [48 h]; Labor [50 h]; Driver [50 h]; Eq. Operator [100 h]; Carpenter [50 h]; Steel Fixer [50 h]; Mason [50 h]; Electrician [50 h]; 2 x 32 mm HDPE sub-ducts [69.79]; 6-ways ducts, 50mm diameter, (HDPE TYPE) + 6 x 32 mm HDPE sub-ducts [68.98] | 20,775 | 18,697.5 | A7130 | 0.4 | L05 |
| CON-LEG101-LR-9190 |  | Installation of Sand and soil encased duct banks, for combined network of primary and secondary [Local – 05 ] | 10d | 2026-09-05 A | 2027-06-16 | CON-LEG101-LR-9090, CON-LEG101-EN-3440 | 90% | 1d | 2027-04-26 | 2027-05-06 | 24.2d | 0d | Truck [144 h]; Bucket [144 h]; Compactor [144 h]; Labor [150 h]; Driver [150 h]; Eq. Operator [300 h]; Carpenter [150 h]; Steel Fixer [150 h]; Mason [150 h]; Electrician [150 h]; 4 x 32 mm HDPE sub-ducts [13.82]; 6-ways ducts, 50mm diameter, (HDPE TYPE) + 2 x 32 mm HDPE sub-ducts [4.9] | 4,969 | 4,472.1 | A7290 | 0.4 | L05 |
|  | 11 | **CCTV feeding system and GSM** |  | 2026-05-25 | 2027-06-28 |  |  |  |  |  |  |  |  |  |  |  |  |  |
| CON-LEG101-LR-9910 |  | Installation of 25 Meters pole for CCTV Cameras [Local – 05 ] | 4d | 2026-05-25 A | 2026-07-08 A | CON-LEG101-LR-9860, CON-LEG101-PR-3870 | 100% |  | 2027-03-27 | 2027-03-30 |  |  | Truck [48 h]; Bucket [48 h]; Compactor [48 h]; Labor [50 h]; Driver [50 h]; Eq. Operator [100 h]; Carpenter [50 h]; Steel Fixer [50 h]; Mason [50 h]; Electrician [50 h]; "25 Meters pole for CCTV Cameras including : [0.67] | 87,100 | 87,100 | A8650 | 1 | L05 |
| CON-LEG101-LR-10000 |  | Installation of Short Range wireless point to point wireless bridge [Local – 05 ] | 2d | 2026-07-15 A | 2026-09-23 A | CON-LEG101-LR-9910, CON-LEG101-PR-3910 | 100% |  | 2027-05-06 | 2027-05-08 |  |  | Truck [48 h]; Bucket [48 h]; Compactor [48 h]; Labor [50 h]; Driver [50 h]; Eq. Operator [100 h]; Carpenter [50 h]; Steel Fixer [50 h]; Mason [50 h]; Electrician [50 h]; Short Range wireless point to point wireless bridge |  |  | A8770 | 0.9 | L05 |
| CON-LEG101-LR-8610 |  | Excavation works for Low Voltage Cables for CCTV feeding system and GSM [Local – 05 ] | 4d | 2026-07-15 A | 2026-09-23 A | CON-LEG101-LR-8890, CON-LEG101-EN-3290, CON-LEG101-EN-3440 | 100% |  | 2027-03-06 | 2027-03-09 |  |  | Excavator [48 h]; Truck [48 h]; Labor [200 h]; Driver [50 h]; Eq. Operator [50 h]; Duct bank for (1) cables [16.75] | 4,020 | 4,020 | A6390 | 0.8 | L05 |
| CON-LEG101-LR-8680 |  | Installation of Low Voltage Cables for CCTV feeding system and GSM [Local – 05 ] | 6d | 2026-07-15 A | 2026-09-23 A | CON-LEG101-LR-8610, CON-LEG101-PR-1900 | 100% |  | 2027-03-10 | 2027-03-16 |  |  | Excavator [48 h]; Truck [48 h]; Bucket [48 h]; Compactor [48 h]; Labor [100 h]; Skilled Labor [50 h]; Driver [50 h]; Eq. Operator [150 h]; Electrician [100 h]; Stranded Copper wire, , 3xC,2 mm² XLPE/PVC [11.73]; Stranded armored Cables, Copper, 4C,35mm² XLPE/SWA /PVC [41.54]; Stranded armored Cables, Copper, 4xC16mm² XLPE /SWA/PVC [157.45]; Single Core Cable, Copper 1C,16mm² CU/PVC For Earth [41.54]; Single Core Cable, Copper 1C,10mm² CU/PVC For Earth [157.45] | 18,626.25 | 18,626.25 | A6470 | 0.9 | L05 |
| CON-LEG101-LR-9440 |  | Installation of Fiber Optic Patch Panel 12 port [Local – 05 ] | 4d | 2026-07-15 A | 2026-09-23 A | CON-LEG101-LR-8680, CON-LEG101-PR-3360 | 100% |  | 2027-03-17 | 2027-03-21 |  |  | Truck [48 h]; Bucket [48 h]; Compactor [48 h]; Labor [50 h]; Driver [50 h]; Eq. Operator [100 h]; Carpenter [50 h]; Steel Fixer [50 h]; Mason [50 h]; Electrician [50 h]; Fiber Optic Patch Panel 12 port [0.67] | 6,700 | 6,700 | A7690 | 0.9 | L05 |
| CON-LEG101-LR-9500 |  | Installation of 8POE ports Industrial Switches for remote poles [Local – 05 ] | 3d | 2026-07-15 A | 2026-09-23 A | CON-LEG101-LR-9440, CON-LEG101-PR-3410 | 100% |  | 2027-03-22 | 2027-03-24 |  |  | Truck [48 h]; Bucket [48 h]; Compactor [48 h]; Labor [50 h]; Driver [50 h]; Eq. Operator [100 h]; Carpenter [50 h]; Steel Fixer [50 h]; Mason [50 h]; Electrician [50 h]; 8POE ports Industrial Switches for remote poles [2.01] | 20,100 | 20,100 | A7820 | 0.9 | L05 |
| CON-LEG101-LR-9530 |  | Installation of Core Switch [Local – 05 ] | 8d | 2026-07-15 A | 2026-09-23 A | CON-LEG101-LR-9500, CON-LEG101-PR-3450 | 100% |  | 2027-03-25 | 2027-04-03 |  |  | Truck [48 h]; Bucket [48 h]; Compactor [48 h]; Labor [50 h]; Driver [50 h]; Eq. Operator [100 h]; Carpenter [50 h]; Steel Fixer [50 h]; Mason [50 h]; Electrician [50 h]; CORE SWITCH [0.67] | 20,100 | 20,100 | A7890 | 0.9 | L05 |
| CON-LEG101-LR-9550 |  | Installation of Access Switch 48 port [Local – 05 ] | 4d | 2026-07-15 A | 2026-09-23 A | CON-LEG101-LR-9530, CON-LEG101-PR-3490 | 100% |  | 2027-04-11 | 2027-04-15 |  |  | Electrician [50 h]; Access Switch 48 port [0.67]; Truck [48 h]; Bucket [48 h]; Compactor [48 h]; Labor [50 h]; Driver [50 h]; Eq. Operator [100 h]; Carpenter [50 h]; Steel Fixer [50 h]; Mason [50 h] | 10,050 | 10,050 | A7940 | 0.9 | L05 |
| CON-LEG101-LR-9580 |  | Installation of Server [Local – 05 ] | 3d | 2026-07-15 A | 2026-09-23 A | CON-LEG101-LR-9550, CON-LEG101-PR-3530 | 100% |  | 2027-04-08 | 2027-04-11 |  |  | Truck [48 h]; Bucket [48 h]; Compactor [48 h]; Labor [50 h]; Driver [50 h]; Eq. Operator [100 h]; Carpenter [50 h]; Steel Fixer [50 h]; Mason [50 h]; Electrician [50 h]; SERVER [0.67] | 43,550 | 43,550 | A8000 | 0.9 | L05 |
| CON-LEG101-LR-9670 |  | Installation of IP Outdoor CCTV POE Camera,5 MP, Metal Housing [Local – 05 ] | 4d | 2026-07-15 A | 2026-09-23 A | CON-LEG101-LR-9600, CON-LEG101-PR-3610 | 100% |  | 2027-04-22 | 2027-04-26 |  |  | Truck [48 h]; Bucket [48 h]; Compactor [48 h]; Labor [50 h]; Driver [50 h]; Eq. Operator [100 h]; Carpenter [50 h]; Steel Fixer [50 h]; Mason [50 h]; Electrician [50 h]; IP Outdoor CCTV POE Camera,5 MP, Metal Housing [1.34] | 6,700 | 6,700 | A8150 | 0.9 | L05 |
| CON-LEG101-LR-9750 |  | Installation of Outdoor PTZ IP66 [Local – 05 ] | 3d | 2026-07-15 A | 2026-09-23 A | CON-LEG101-LR-9670, CON-LEG101-PR-3650 | 100% |  | 2027-04-27 | 2027-04-29 |  |  | Truck [48 h]; Bucket [48 h]; Compactor [48 h]; Labor [50 h]; Driver [50 h]; Eq. Operator [100 h]; Carpenter [50 h]; Steel Fixer [50 h]; Mason [50 h]; Electrician [50 h]; "Outdoor PTZ with IR, HDTV 1080 and 31x optical, 12x digital, total 372x zoom, H264/265 with Motion JPEG. [0.67] | 23,450 | 23,450 | A8260 | 0.9 | L05 |
| CON-LEG101-LR-9860 |  | Installation of Horizontal Power Distribution Unit (min 8 outlets) [Local – 05 ] | 3d | 2026-07-15 A | 2026-09-23 A | CON-LEG101-LR-9810, CON-LEG101-PR-3730 | 100% |  | 2027-05-03 | 2027-05-05 |  |  | Truck [48 h]; Bucket [48 h]; Compactor [48 h]; Labor [50 h]; Driver [50 h]; Eq. Operator [100 h]; Carpenter [50 h]; Steel Fixer [50 h]; Mason [50 h]; Electrician [50 h]; Horizontal Power Distribution Unit (min 8 outlets) [0.67] | 6,700 | 6,700 | A8540 | 0.9 | L05 |
| CON-LEG101-LR-9600 |  | Installation of Stand rack 42U- 19" [Local – 05 ] | 3d | 2027-06-17 | 2027-06-20 | CON-LEG101-LR-9580, CON-LEG101-PR-3570, CON-LEG101-LR-9390 |  |  |  |  | 50.6d | 0d | Truck [48 h]; Bucket [48 h]; Compactor [48 h]; Labor [50 h]; Driver [50 h]; Eq. Operator [100 h]; Carpenter [50 h]; Steel Fixer [50 h]; Mason [50 h]; Electrician [50 h]; Stand rack 42U- 19" completed with ,ventilation fans, earthling connections, labeling and should be equipped with an extra capacity of 20% for future increase. [0.67] | 10,050 |  | A8050 |  | L05 |
| CON-LEG101-LR-9810 |  | Installation of LED Screen 43" (24/7 operation) with Ethernet decoders [Local – 05 ] | 2d | 2027-06-27 | 2027-06-28 | CON-LEG101-PR-3950, CON-LEG101-LR-9750, CON-LEG101-PR-3290 |  |  |  |  | 45.6d | 0d | Truck [48 h]; Bucket [48 h]; Compactor [48 h]; Labor [50 h]; Driver [50 h]; Eq. Operator [100 h]; Carpenter [50 h]; Steel Fixer [50 h]; Mason [50 h]; Electrician [50 h]; LED Screen 43" (24/7 operation) with Ethernet decoders [1.34] | 20,100 |  | A8380 |  | L05 |
|  | 12 | **Earthing System** |  | 2027-08-02 | 2027-08-04 |  |  |  |  |  |  |  |  |  |  |  |  |  |
| CON-LEG101-LR-15150 |  | Installation of Earthing for Distribution panels,SL feeder pillars, KWH, Unit substations and RMU [Local – 05 ] | 2d | 2027-08-02 | 2027-08-04 | CON-LEG101-LR-7540, CON-LEG101-LR-7460, CON-LEG101-LR-10000, CON-LEG101-LR-9910 |  |  |  |  | 16.2d | 62.6d | Earthing for Distribution panels,SL feeder pillars, KWH, Unit substations and RMU; Crane [48 h]; Labor [100 h]; Eq. Operator [50 h]; Electrician [100 h] |  |  | A5850 |  | L05 |

| ID | WBS | Activity | Duration | Start | Finish | Predecessors | Complete | Remaining | Planned start | Planned finish | Total float | Free float | Resources | Cost | Actual cost | Mapping Sheet Activity ID | % A | JEDDAH 1 - Area Name |
| --- | --- | --- | --- | --- | --- | --- | --- | --- | --- | --- | --- | --- | --- | --- | --- | --- | --- | --- |
|  | 9 | **Road Lighting** |  | 2026-03-15 | 2027-08-05 |  |  |  |  |  |  |  |  |  |  |  |  |  |
| CON-LEG101-LR-8140 |  | Installation of Lighting poles [Local – 05 ] | 20d | 2026-03-15 A | 2026-08-17 A | CON-LEG101-PR-1950, CON-LEG101-LR-7840, CON-LEG101-LR-8130, CON-LEG101-PR-1910 | 100% |  | 2027-01-23 | 2027-02-18 |  |  | Lighting poles with 1 arm, height of (8 ) meters, including the power distribution box, cables, and RCC foundation. [26.8]; Excavator [48 h]; Truck [48 h]; Crane [48 h]; Labor [150 h]; Driver [50 h]; Eq. Operator [100 h]; Carpenter [50 h]; Steel Fixer [50 h]; Mason [50 h]; Electrician [150 h] | 91,120 | 91,120 | A5590 | 1 | L05 |
| CON-LEG101-LR-7460 |  | Installation of Unit Substation Including concrete foundations and fencing [Local – 05 ] | 7d | 2026-07-15 A | 2027-07-25 | CON-LEG101-LR-8140, CON-LEG101-LR-8610, CON-LEG101-EN-3310, CON-LEG101-EN-3320, CON-LEG101-EN-3330, CON-LEG101-EN-3360, CON-LEG101-PR-1890 | 30% | 4.9d | 2027-04-27 | 2027-05-05 | 15.2d | 0d | Unit Substation 13.8/0.4 K V, 500kVA ,Including concrete foundations and fencing, According to the specifications and standards of SEC; Excavator [48 h]; Truck [48 h]; Bucket [48 h]; Compactor [48 h]; Labor [100 h]; Skilled Labor [50 h]; Driver [50 h]; Eq. Operator [150 h]; Electrician [100 h] |  |  | A4600 | 0.3 | L05 |
| CON-LEG101-LR-8240 |  | Installation of Street Lighting Luminaire [Local – 05 ] | 5d | 2026-08-01 A | 2026-08-17 A | CON-LEG101-LR-8140, CON-LEG101-PR-1920 | 100% |  | 2027-04-29 | 2027-05-05 |  |  | Street Lighting( LED) Luminous efficacy ? 120Lum/w complete with control gear and lamp, (100) WATT. Max. [26.8]; Crane [48 h]; Labor [150 h]; Skilled Labor [100 h]; Eq. Operator [50 h]; Electrician [150 h] | 26,800 | 26,800 | A5730 | 1 | L05 |
| CON-LEG101-LR-8390 |  | Installation of Earthing for Streetlighting feeders for every end pole circuits. [Local – 05 ] | 5d | 2026-08-10 A | 2027-08-05 | CON-LEG101-LR-7460, CON-LEG101-LR-7540, CON-LEG101-PR-1480, CON-LEG101-LR-8240, CON-LEG101-PR-1310 | 40% | 3d | 2027-06-02 | 2027-06-08 | 15.2d | 61.6d | Earthing for Streetlighting feeders for every end pole circuits.; Crane [48 h]; Labor [100 h]; Eq. Operator [50 h]; Carpenter [100 h]; Electrician [200 h] |  |  | A5950 | 0.4 | L05 |
| CON-LEG101-LR-7540 |  | Installation of Ring Main Unit RMU [Local – 05 ] | 7d | 2027-07-25 | 2027-08-02 | CON-LEG101-LR-8140, CON-LEG101-LR-7460, CON-LEG101-PR-2510 |  |  |  |  | 15.2d | 0d | Ring Main Unit RMU, 13.8KV, According to the specifications and standards of SEC; Excavator [48 h]; Truck [48 h]; Bucket [48 h]; Compactor [48 h]; Labor [100 h]; Skilled Labor [50 h]; Driver [50 h]; Eq. Operator [150 h]; Electrician [100 h] |  |  | A4710 |  | L05 |
|  | 6 | **Local – 06** |  | 2026-03-16 | 2027-07-31 |  |  |  |  |  |  |  |  |  |  |  |  |  |
|  | 5 | **TSE Network** |  | 2026-04-01 | 2026-09-03 |  |  |  |  |  |  |  |  |  |  |  |  |  |
|  | 2 | **Pipe Work** |  | 2026-04-01 | 2026-06-23 |  |  |  |  |  |  |  |  |  |  |  |  |  |
| CON-LEG101-LR-1380 |  | Excavation for TSE Network [Local – 06 ] | 10d | 2026-04-01 A | 2026-04-12 A | CON-LEG101-LR-3560, CON-LEG101-LR-3480, CON-LEG101-LR-11560, CON-LEG101-LR-4280, CON-LEG101-LR-2840, CON-LEG101-EN-1720, CON-LEG101-EN-1730, CON-LEG101-EN-1740, CON-LEG101-EN-1810 | 100% |  | 2026-07-11 | 2026-07-22 |  |  | Excavator [31.2 h]; Water Tanker [28.4 h]; Truck [96 h]; Crane [48 h]; Labor [200 h]; Driver [150 h]; Eq. Operator [100 h]; Piping TSE Network - 110mm Diameter Depth: 0.00 m - 1.50 m. [6.9]; Piping TSE Network - 110mm Diameter Depth: 1.51m - 2.50m [10.14]; Piping TSE Network - 200mm Diameter Depth: 0.00 m - 1.50 m. [24.84]; Piping TSE Network - 200mm Diameter Depth: 1.51m - 2.50m [47.88]; Piping TSE Network - 200mm Diameter Depth: 2.51m - 3.50m; Piping TSE Network - 200mm Diameter Depth exceeds 3.50m; Piping TSE Network - 110mm Diameter Depth exceeds 2.50m; Piping TSE Network - 160mm Diameter Depth: 0.00 m - 1.50 m.; Piping TSE Network - 160mm Diameter Depth: 1.51m - 2.50m; Piping TSE Network - 160mm Diameter Depth exceeds 2.50m; Piping TSE Network - 250mm Diameter Depth: 0.00 m - 1.50 m.; Piping TSE Network - 250mm Diameter Depth: 1.51m - 2.50m; Piping TSE Network - 250mm Diameter Depth exceeds 2.50m | 25,741.8 | 25,741.8 | A11010 | 1 | L06 |
| CON-LEG101-LR-1490 |  | Granular bedding for TSE Network [Local – 06 ] | 7d | 2026-04-13 A | 2026-05-21 A | CON-LEG101-LR-1380 | 100% |  | 2026-07-19 | 2026-07-27 |  |  | Loader [48 h]; Truck [48 h]; Driver [50 h]; Eq. Operator [50 h]; Piping TSE Network - 110mm Diameter Depth: 0.00 m - 1.50 m. [1.73]; Piping TSE Network - 110mm Diameter Depth: 1.51m - 2.50m [2.54]; Piping TSE Network - 200mm Diameter Depth: 0.00 m - 1.50 m. [6.21]; Piping TSE Network - 200mm Diameter Depth: 1.51m - 2.50m [11.97]; Piping TSE Network - 200mm Diameter Depth: 2.51m - 3.50m; Piping TSE Network - 200mm Diameter Depth exceeds 3.50m; Piping TSE Network - 110mm Diameter Depth exceeds 2.50m; Piping TSE Network - 160mm Diameter Depth: 0.00 m - 1.50 m.; Piping TSE Network - 160mm Diameter Depth: 1.51m - 2.50m; Piping TSE Network - 160mm Diameter Depth exceeds 2.50m; Piping TSE Network - 250mm Diameter Depth: 0.00 m - 1.50 m.; Piping TSE Network - 250mm Diameter Depth: 1.51m - 2.50m; Piping TSE Network - 250mm Diameter Depth exceeds 2.50m | 6,437.7 | 6,437.7 | A11130 | 1 | L06 |
| CON-LEG101-LR-1600 |  | Installation of Pipe for TSE Network [Local – 06 ] | 10d | 2026-04-15 A | 2026-05-24 A | CON-LEG101-PR-2590, CON-LEG101-LR-1490, CON-LEG101-PR-1690 | 100% |  | 2026-07-20 | 2026-08-01 |  |  | Excavator [42.4 h]; Crane [48 h]; Labor [150 h]; Skilled Labor [100 h]; Eq. Operator [100 h]; Plumber [50 h]; Pipe Fitter [50 h]; Piping TSE Network - 110mm Diameter Depth: 0.00 m - 1.50 m. [15.53]; Piping TSE Network - 110mm Diameter Depth: 1.51m - 2.50m [22.83]; Piping TSE Network - 200mm Diameter Depth: 0.00 m - 1.50 m. [55.9]; Piping TSE Network - 200mm Diameter Depth: 1.51m - 2.50m [107.74]; Piping TSE Network - 200mm Diameter Depth: 2.51m - 3.50m; Piping TSE Network - 200mm Diameter Depth exceeds 3.50m; Piping TSE Network - 110mm Diameter Depth exceeds 2.50m; Piping TSE Network - 160mm Diameter Depth: 0.00 m - 1.50 m.; Piping TSE Network - 160mm Diameter Depth: 1.51m - 2.50m; Piping TSE Network - 160mm Diameter Depth exceeds 2.50m; Piping TSE Network - 250mm Diameter Depth: 0.00 m - 1.50 m.; Piping TSE Network - 250mm Diameter Depth: 1.51m - 2.50m; Piping TSE Network - 250mm Diameter Depth exceeds 2.50m | 57,929.7 | 57,929.7 | A11250 | 1 | L06 |
| CON-LEG101-LR-1710 |  | Testing for TSE Network [Local – 06 ] | 7d | 2026-06-13 A | 2026-06-14 A | CON-LEG101-LR-1600 | 100% |  | 2026-08-17 | 2026-08-25 |  |  | Labor [257.14 h]; Skilled Labor [100 h]; Pipe Fitter [100 h]; Piping TSE Network - 110mm Diameter Depth: 0.00 m - 1.50 m. [3.45]; Piping TSE Network - 110mm Diameter Depth: 1.51m - 2.50m [5.07]; Piping TSE Network - 200mm Diameter Depth: 0.00 m - 1.50 m. [12.42]; Piping TSE Network - 200mm Diameter Depth: 1.51m - 2.50m [23.95]; Piping TSE Network - 200mm Diameter Depth: 2.51m - 3.50m; Piping TSE Network - 200mm Diameter Depth exceeds 3.50m; Piping TSE Network - 110mm Diameter Depth exceeds 2.50m; Piping TSE Network - 160mm Diameter Depth: 0.00 m - 1.50 m.; Piping TSE Network - 160mm Diameter Depth: 1.51m - 2.50m; Piping TSE Network - 160mm Diameter Depth exceeds 2.50m; Piping TSE Network - 250mm Diameter Depth: 0.00 m - 1.50 m.; Piping TSE Network - 250mm Diameter Depth: 1.51m - 2.50m; Piping TSE Network - 250mm Diameter Depth exceeds 2.50m | 12,874.2 | 12,874.2 | A11370 | 1 | L06 |
| CON-LEG101-LR-1830 |  | Concrete encasement, pipe dia 110 mm [Local – 06 ] | 2d | 2026-06-15 A | 2026-06-17 A | CON-LEG101-LR-1710, CON-LEG101-EN-3450, CON-LEG101-PR-1430 | 100% |  | 2026-08-25 | 2026-08-27 |  |  | Labor [300 h]; Carpenter [50 h]; Mason [100 h]; Piping TSE Network - Concrete encasement, pipe dia 110 mm [4.56] | 1,596 | 1,596 | A11520 | 1 | L06 |
| CON-LEG101-LR-1930 |  | Granular Surround for TSE Network [Local – 06 ] | 7d | 2026-06-16 A | 2026-06-17 A | CON-LEG101-LR-1830, CON-LEG101-EN-3450 | 100% |  | 2026-08-27 | 2026-09-05 |  |  | Loader [48 h]; Truck [100 h]; Driver [100 h]; Eq. Operator [50 h]; Piping TSE Network - 110mm Diameter Depth: 0.00 m - 1.50 m. [1.73]; Piping TSE Network - 110mm Diameter Depth: 1.51m - 2.50m [2.54]; Piping TSE Network - 200mm Diameter Depth: 0.00 m - 1.50 m. [6.21]; Piping TSE Network - 200mm Diameter Depth: 1.51m - 2.50m [11.97]; Piping TSE Network - 200mm Diameter Depth: 2.51m - 3.50m; Piping TSE Network - 200mm Diameter Depth exceeds 3.50m; Piping TSE Network - 110mm Diameter Depth exceeds 2.50m; Piping TSE Network - 160mm Diameter Depth: 0.00 m - 1.50 m.; Piping TSE Network - 160mm Diameter Depth: 1.51m - 2.50m; Piping TSE Network - 160mm Diameter Depth exceeds 2.50m; Piping TSE Network - 250mm Diameter Depth: 0.00 m - 1.50 m.; Piping TSE Network - 250mm Diameter Depth: 1.51m - 2.50m; Piping TSE Network - 250mm Diameter Depth exceeds 2.50m | 6,437.7 | 6,437.7 | A11620 | 1 | L06 |
| CON-LEG101-LR-2040 |  | Installation of Micron Marker Magnetic Tape [Local – 06 ] | 3d | 2026-06-18 A | 2026-06-18 A | CON-LEG101-LR-1930 | 100% |  | 2026-09-05 | 2026-09-08 |  |  | Piping TSE Network - 200mm Diameter Depth: 2.51m - 3.50m; Piping TSE Network - 200mm Diameter Depth exceeds 3.50m; Piping TSE Network - 110mm Diameter Depth exceeds 2.50m; Piping TSE Network - 160mm Diameter Depth: 0.00 m - 1.50 m.; Piping TSE Network - 160mm Diameter Depth: 1.51m - 2.50m; Piping TSE Network - 160mm Diameter Depth exceeds 2.50m; Piping TSE Network - 250mm Diameter Depth: 0.00 m - 1.50 m.; Piping TSE Network - 250mm Diameter Depth: 1.51m - 2.50m; Piping TSE Network - 250mm Diameter Depth exceeds 2.50m; Labor [200 h]; Piping TSE Network - 110mm Diameter Depth: 0.00 m - 1.50 m. [1.73]; Piping TSE Network - 110mm Diameter Depth: 1.51m - 2.50m [2.54]; Piping TSE Network - 200mm Diameter Depth: 0.00 m - 1.50 m. [6.21]; Piping TSE Network - 200mm Diameter Depth: 1.51m - 2.50m [11.97] | 6,437.7 | 6,437.7 | A11740 | 1 | L06 |
| CON-LEG101-LR-2150 |  | Backfilling to Subgrade Elevation [Local – 06 ] | 14d | 2026-06-20 A | 2026-06-23 A | CON-LEG101-LR-2040, CON-LEG101-EN-3440 | 100% |  | 2026-09-08 | 2026-09-26 |  |  | Piping TSE Network - 200mm Diameter Depth: 2.51m - 3.50m; Piping TSE Network - 200mm Diameter Depth exceeds 3.50m; Piping TSE Network - 110mm Diameter Depth exceeds 2.50m; Piping TSE Network - 160mm Diameter Depth: 0.00 m - 1.50 m.; Piping TSE Network - 160mm Diameter Depth: 1.51m - 2.50m; Piping TSE Network - 160mm Diameter Depth exceeds 2.50m; Piping TSE Network - 250mm Diameter Depth: 0.00 m - 1.50 m.; Piping TSE Network - 250mm Diameter Depth: 1.51m - 2.50m; Piping TSE Network - 250mm Diameter Depth exceeds 2.50m; Excavator [48 h]; Water Tanker [48 h]; Road Roller [48 h]; Bucket [120.57 h]; Compactor [120.57 h]; Labor [200 h]; Driver [200 h]; Eq. Operator [200 h]; Piping TSE Network - 110mm Diameter Depth: 0.00 m - 1.50 m. [3.45]; Piping TSE Network - 110mm Diameter Depth: 1.51m - 2.50m [5.07]; Piping TSE Network - 200mm Diameter Depth: 0.00 m - 1.50 m. [12.42]; Piping TSE Network - 200mm Diameter Depth: 1.51m - 2.50m [23.95] | 12,874.2 | 12,874.2 | A11860 | 1 | L06 |
|  | 1 | **Valves/Chamber** |  | 2026-05-13 | 2026-09-03 |  |  |  |  |  |  |  |  |  |  |  |  |  |
| CON-LEG101-LR-2260 |  | Installation of Gate (Sluice) valves (Direct buried) [Local – 06 ] | 9d | 2026-05-13 A | 2026-08-06 A | CON-LEG101-LR-2150, CON-LEG101-LR-1600, CON-LEG101-PR-1970 | 100% |  | 2026-08-23 | 2026-09-02 |  |  | Excavator [48 h]; Labor [200 h]; Skilled Labor [50 h]; Eq. Operator [50 h]; Pipe Fitter [50 h]; Piping TSE Network - Gate valves, on pipe with diameter 110 mm [6.03]; Piping TSE Network - Gate valves, on pipe with diameter 200 mm [1.34] | 28,810 | 28,810 | A12070 | 1 | L06 |
| CON-LEG101-LR-2530 |  | Installation of Fire Hydrant [Local – 06 ] | 15d | 2026-06-10 A | 2026-09-03 A | CON-LEG101-LR-2150, CON-LEG101-LR-2260, CON-LEG101-PR-2470 | 100% |  | 2026-08-31 | 2026-09-17 |  |  | Piping TSE Network - 3-outlet fire hydrant (2 x 2.5 inch and 1 x 4.5 inch) in the form of a separate dry vacuum cylinder [4.69]; Excavator [48 h]; Labor [150 h]; Skilled Labor [50 h]; Eq. Operator [50 h]; Mason [50 h]; Pipe Fitter [50 h] | 42,210 | 42,210 | A12520 | 1 | L06 |
|  | 6 | **Public Water Utility Distribution** |  | 2026-04-01 | 2026-05-19 |  |  |  |  |  |  |  |  |  |  |  |  |  |
|  | 2 | **Pipe Work** |  | 2026-04-01 | 2026-05-19 |  |  |  |  |  |  |  |  |  |  |  |  |  |
| CON-LEG101-LR-10110 |  | Excavation for Public Water Utility Distribution Piping [Local – 06 ] | 11d | 2026-04-01 A | 2026-04-12 A | CON-LEG101-LR-2150, CON-LEG101-LR-3480, CON-LEG101-LR-4280, CON-LEG101-EN-1690, CON-LEG101-EN-1700, CON-LEG101-EN-1710, CON-LEG101-EN-3440 | 100% |  | 2026-09-19 | 2026-10-03 |  |  | Public Water - 110mm Diameter Depth: 0.00 m - 1.50 m. [57.7]; Public Water - 110mm Diameter Depth: 1.51 m - 2.50 m. [37.65]; Excavator [48 h]; Water Tanker [48 h]; Truck [96 h]; Crane [48 h]; Labor [200 h]; Driver [250 h]; Eq. Operator [100 h]; Public Water - 110mm Diameter Depth exceeds 2.50m; Public Water - 160mm Diameter Depth: 1.51m - 2.50m; Public Water - 200mm Diameter Depth: 0.00m -1.50m; Public Water - 160mm Diameter Depth: 0.00 m - 1.50 m.; Public Water - 160mm Diameter Depth exceeds 2.50m; Public Water - 200mm Diameter Depth: 1.51m - 2.50m; Public Water - 200mm Diameter Depth exceeds 2.50m | 20,551.5 | 20,551.5 | A9090 | 1 | L06 |
| CON-LEG101-LR-10210 |  | Granular bedding for Public Water Utility Distribution Piping [Local – 06 ] | 8d | 2026-04-13 A | 2026-05-09 A | CON-LEG101-LR-10110 | 100% |  | 2026-09-21 | 2026-10-01 |  |  | Public Water - 110mm Diameter Depth: 0.00 m - 1.50 m. [14.43]; Public Water - 110mm Diameter Depth: 1.51 m - 2.50 m. [9.41]; Loader [48 h]; Truck [48 h]; Driver [100 h]; Eq. Operator [50 h]; Public Water - 110mm Diameter Depth exceeds 2.50m; Public Water - 160mm Diameter Depth: 1.51m - 2.50m; Public Water - 200mm Diameter Depth: 0.00m -1.50m; Public Water - 160mm Diameter Depth: 0.00 m - 1.50 m.; Public Water - 160mm Diameter Depth exceeds 2.50m; Public Water - 200mm Diameter Depth: 1.51m - 2.50m; Public Water - 200mm Diameter Depth exceeds 2.50m | 5,138.1 | 5,138.1 | A9210 | 1 | L06 |
| CON-LEG101-LR-10310 |  | Installation of Pipe for Public Water Utility Distribution Piping [Local – 06 ] | 12d | 2026-04-15 A | 2026-05-10 A | CON-LEG101-PR-4010, CON-LEG101-LR-10210, CON-LEG101-PR-1660 | 100% |  | 2026-09-15 | 2026-09-30 |  |  | Public Water - 110mm Diameter Depth: 0.00 m - 1.50 m. [129.83]; Public Water - 110mm Diameter Depth: 1.51 m - 2.50 m. [84.72]; Excavator [48 h]; Crane [48 h]; Labor [175 h]; Skilled Labor [100 h]; Eq. Operator [100 h]; Plumber [50 h]; Pipe Fitter [50 h]; Public Water - 110mm Diameter Depth exceeds 2.50m; Public Water - 160mm Diameter Depth: 1.51m - 2.50m; Public Water - 200mm Diameter Depth: 0.00m -1.50m; Public Water - 160mm Diameter Depth: 0.00 m - 1.50 m.; Public Water - 160mm Diameter Depth exceeds 2.50m; Public Water - 200mm Diameter Depth: 1.51m - 2.50m; Public Water - 200mm Diameter Depth exceeds 2.50m | 46,243.8 | 46,243.8 | A9330 | 1 | L06 |
| CON-LEG101-LR-10410 |  | Testing for Public Water Utility Distribution Piping [Local – 06 ] | 8d | 2026-05-11 A | 2026-05-12 A | CON-LEG101-LR-10310 | 100% |  | 2026-08-27 | 2026-09-06 |  |  | Public Water - 110mm Diameter Depth: 0.00 m - 1.50 m. [28.85]; Public Water - 110mm Diameter Depth: 1.51 m - 2.50 m. [18.83]; Labor [200 h]; Skilled Labor [100 h]; Pipe Fitter [100 h]; Public Water - 110mm Diameter Depth exceeds 2.50m; Public Water - 160mm Diameter Depth: 1.51m - 2.50m; Public Water - 200mm Diameter Depth: 0.00m -1.50m; Public Water - 160mm Diameter Depth: 0.00 m - 1.50 m.; Public Water - 160mm Diameter Depth exceeds 2.50m; Public Water - 200mm Diameter Depth: 1.51m - 2.50m; Public Water - 200mm Diameter Depth exceeds 2.50m | 10,277.1 | 10,277.1 | A9460 | 1 | L06 |
| CON-LEG101-LR-10510 |  | Concrete encasement, pipe dia 110 mm [Local – 06 ] | 3d | 2026-05-13 A | 2026-05-14 A | CON-LEG101-LR-10410, CON-LEG101-EN-3450, CON-LEG101-PR-1430 | 100% |  | 2026-09-06 | 2026-09-09 |  |  | Public Water - Concrete encasement, pipe dia 110 mm [12.86]; Labor [200 h]; Carpenter [50 h]; Mason [100 h] | 4,501 | 4,501 | A9610 | 1 | L06 |
| CON-LEG101-LR-10610 |  | Granular Surround for Public Water Utility Distribution Piping [Local – 06 ] | 8d | 2026-05-13 A | 2026-05-14 A | CON-LEG101-LR-10510, CON-LEG101-EN-3450 | 100% |  | 2026-09-09 | 2026-09-19 |  |  | Public Water - 110mm Diameter Depth: 0.00 m - 1.50 m. [14.43]; Public Water - 110mm Diameter Depth: 1.51 m - 2.50 m. [9.41]; Loader [48 h]; Truck [48 h]; Driver [50 h]; Eq. Operator [50 h]; Public Water - 110mm Diameter Depth exceeds 2.50m; Public Water - 160mm Diameter Depth: 1.51m - 2.50m; Public Water - 200mm Diameter Depth: 0.00m -1.50m; Public Water - 160mm Diameter Depth: 0.00 m - 1.50 m.; Public Water - 160mm Diameter Depth exceeds 2.50m; Public Water - 200mm Diameter Depth: 1.51m - 2.50m; Public Water - 200mm Diameter Depth exceeds 2.50m | 5,138.1 | 5,138.1 | A9720 | 1 | L06 |
| CON-LEG101-LR-10710 |  | Installation of Micron Marker Magnetic Tape [Local – 06 ] | 3d | 2026-05-16 A | 2026-05-16 A | CON-LEG101-LR-10610 | 100% |  | 2026-09-19 | 2026-09-22 |  |  | Public Water - 110mm Diameter Depth: 0.00 m - 1.50 m. [14.43]; Public Water - 110mm Diameter Depth: 1.51 m - 2.50 m. [9.41]; Labor [100 h]; Public Water - 110mm Diameter Depth exceeds 2.50m; Public Water - 160mm Diameter Depth: 1.51m - 2.50m; Public Water - 200mm Diameter Depth: 0.00m -1.50m; Public Water - 160mm Diameter Depth: 0.00 m - 1.50 m.; Public Water - 160mm Diameter Depth exceeds 2.50m; Public Water - 200mm Diameter Depth: 1.51m - 2.50m; Public Water - 200mm Diameter Depth exceeds 2.50m | 5,138.1 | 5,138.1 | A9840 | 1 | L06 |
| CON-LEG101-LR-10810 |  | Backfilling to Subgrade Elevation [Local – 06 ] | 7d | 2026-05-17 A | 2026-05-19 A | CON-LEG101-LR-10710, CON-LEG101-EN-3440 | 100% |  | 2026-09-22 | 2026-10-01 |  |  | Public Water - 110mm Diameter Depth: 0.00 m - 1.50 m. [28.85]; Public Water - 110mm Diameter Depth: 1.51 m - 2.50 m. [18.83]; Excavator [48 h]; Water Tanker [48 h]; Road Roller [48 h]; Bucket [48 h]; Compactor [48 h]; Labor [100 h]; Driver [50 h]; Eq. Operator [200 h]; Public Water - 110mm Diameter Depth exceeds 2.50m; Public Water - 160mm Diameter Depth: 1.51m - 2.50m; Public Water - 200mm Diameter Depth: 0.00m -1.50m; Public Water - 160mm Diameter Depth: 0.00 m - 1.50 m.; Public Water - 160mm Diameter Depth exceeds 2.50m; Public Water - 200mm Diameter Depth: 1.51m - 2.50m; Public Water - 200mm Diameter Depth exceeds 2.50m | 10,277.1 | 10,277.1 | A9960 | 1 | L06 |

| ID | WBS | Activity | Duration | Start | Finish | Predecessors | Complete | Remaining | Planned start | Planned finish | Total float | Free float | Resources | Cost | Actual cost | Mapping Sheet Activity ID | % A | JEDDAH 1 - Area Name |
| --- | --- | --- | --- | --- | --- | --- | --- | --- | --- | --- | --- | --- | --- | --- | --- | --- | --- | --- |
|  | 1 | **Valves/Chamber** |  | 2026-05-09 | 2026-05-10 |  |  |  |  |  |  |  |  |  |  |  |  |  |
| CON-LEG101-LR-1070 |  | Installation of Gate (Sluice) valves (Direct buried) [Local – 06 ] | 3d | 2026-05-09 A | 2026-05-10 A | CON-LEG101-LR-10710, CON-LEG101-LR-10310, CON-LEG101-PR-1960 | 100% |  | 2026-09-22 | 2026-09-27 |  |  | Public Water - Gate valves, on pipe with diameter 110 mm [4.02]; Excavator [48 h]; Labor [100 h]; Skilled Labor [50 h]; Eq. Operator [50 h]; Pipe Fitter [50 h] | 12,060 | 12,060 | A10160 | 1 | L06 |
|  | 1 | **Electrical Works** |  | 2026-06-13 | 2026-08-02 |  |  |  |  |  |  |  |  |  |  |  |  |  |
|  | 3 | **Low Voltage** |  | 2026-06-13 | 2026-08-02 |  |  |  |  |  |  |  |  |  |  |  |  |  |
| CON-LEG101-LR-8050 |  | Installation of Low Voltage Cables Duct Banks [Local – 06 ] | 4d | 2026-06-13 A | 2026-06-17 A | CON-LEG101-LR-7850, CON-LEG101-PR-1320 | 100% |  | 2027-01-24 | 2027-01-27 |  |  | Truck [48 h]; Bucket [48 h]; Compactor [48 h]; Labor [50 h]; Driver [50 h]; Eq. Operator [100 h]; Carpenter [50 h]; Steel Fixer [50 h]; Mason [50 h]; Electrician [50 h]; Duct bank for (3) cables [2.68]; Duct bank for (1) cables [17.42]; Duct bank for (2) cables [6.7] | 9,045 | 9,045 | A5460 | 1 | L06 |
| CON-LEG101-LR-7850 |  | Excavation works for Low Voltage Cables [Local – 06 ] | 6d | 2026-07-23 A | 2026-07-30 A | CON-LEG101-LR-4280, CON-LEG101-LR-11560, CON-LEG101-LR-3480, CON-LEG101-LR-3560, CON-LEG101-LR-2150, CON-LEG101-LR-10810, CON-LEG101-LR-6950, CON-LEG101-EN-1680, CON-LEG101-EN-3440, CON-LEG101-LR-1070 | 100% |  | 2027-02-27 | 2027-03-04 |  |  | Excavator [96 h]; Truck [96 h]; Labor [400 h]; Driver [100 h]; Eq. Operator [100 h] |  |  | A5180 | 1 | L06 |
| CON-LEG101-LR-7950 |  | Installation of Low Voltage Cables [Local – 06 ] | 6d | 2026-07-25 A | 2026-08-02 A | CON-LEG101-LR-8050, CON-LEG101-LR-7850, CON-LEG101-PR-1900 | 100% |  | 2027-03-06 | 2027-03-11 |  |  | Excavator [96 h]; Truck [96 h]; Bucket [96 h]; Compactor [96 h]; Labor [200 h]; Skilled Labor [100 h]; Driver [100 h]; Eq. Operator [300 h]; Electrician [200 h]; Stranded armored Cables, Copper, 4C,50mm² XLPE /SWA/PVC [1.07]; Stranded armored Cables, Copper, 4C,35mm² XLPE/SWA /PVC [139.36]; Stranded armored Cables, Copper, 4xC16mm² XLPE /SWA/PVC [911.2]; Single Core Cable, Copper 1C,16mm² CU/PVC For Earth [139.36]; Single Core Cable, Copper 1C,10mm² CU/PVC For Earth [911.2]; Single Core Cable, Copper 1C,25mm² CU/PVC For Earth [1.07] | 82,982.8 | 82,982.8 | A5290 | 1 | L06 |
|  | 10 | **Telecommunications** |  | 2026-05-13 | 2027-06-16 |  |  |  |  |  |  |  |  |  |  |  |  |  |
| CON-LEG101-LR-9400 |  | Installation of Reinforced concrete manhole [Local – 06 ] | 6d | 2026-05-13 A | 2026-07-05 A | CON-LEG101-LR-9300, CON-LEG101-PR-3260 | 100% |  | 2027-02-18 | 2027-02-25 |  |  | Truck [48 h]; Bucket [48 h]; Compactor [48 h]; Labor [50 h]; Driver [50 h]; Eq. Operator [100 h]; Carpenter [50 h]; Steel Fixer [50 h]; Mason [50 h]; Electrician [50 h]; Reinforced concrete manhole Type 1- 1200x1500x1200mm [0.67]; Reinforced concrete manhole Type 2- 1200x1500x1200mm [2.01] | 45,560 | 45,560 | A7590 | 1 | L06 |
| CON-LEG101-LR-8900 |  | Installation of Sand and soil encased duct banks for primary network [Local – 06 ] | 4d | 2026-06-13 A | 2026-07-04 A | CON-LEG101-LR-7850, CON-LEG101-EN-3280, CON-LEG101-EN-3440, CON-LEG101-LR-7950 | 100% |  | 2027-02-07 | 2027-02-15 |  |  | Truck [96 h]; Bucket [96 h]; Compactor [96 h]; Labor [100 h]; Driver [100 h]; Eq. Operator [200 h]; Carpenter [100 h]; Steel Fixer [100 h]; Mason [100 h]; Electrician [100 h]; 6-ways ducts, 50mm diameter, (HDPE TYPE) . [296.19]; 6-ways ducts, 50mm diameter, (HDPE TYPE) + 2 x 32 mm HDPE sub-ducts [138.34] | 64,984.4 | 64,984.4 | A6840 | 1 | L06 |
| CON-LEG101-LR-9000 |  | Installation of Concrete encased duct banks for primary network [Local – 06 ] | 6d | 2026-06-13 A | 2026-06-17 A | CON-LEG101-PR-3180, CON-LEG101-PR-4020, CON-LEG101-LR-8900, CON-LEG101-PR-1430 | 100% |  | 2027-02-14 | 2027-02-20 |  |  | Truck [48 h]; Bucket [48 h]; Compactor [48 h]; Labor [50 h]; Driver [50 h]; Eq. Operator [100 h]; Carpenter [50 h]; Steel Fixer [50 h]; Mason [50 h]; Electrician [50 h]; 6-ways ducts, 50mm diameter, (HDPE TYPE) + 4 x 32 mm HDPE sub-ducts [116.74]; 6-ways ducts, 50mm diameter, (HDPE TYPE) . [45.61] | 29,551.5 | 29,551.5 | A6980 | 1 | L06 |
| CON-LEG101-LR-9300 |  | Installation of Concrete encased duct banks for for combined network of primary and secondary [Local – 06 ] | 4d | 2026-06-13 A | 2026-06-17 A | CON-LEG101-PR-3250, CON-LEG101-LR-9200, CON-LEG101-PR-1430 | 100% |  | 2027-03-04 | 2027-03-08 |  |  | Truck [48 h]; Bucket [48 h]; Compactor [48 h]; Labor [50 h]; Driver [50 h]; Eq. Operator [100 h]; Carpenter [50 h]; Steel Fixer [50 h]; Mason [50 h]; Electrician [50 h]; 6 x 32 mm HDPE sub-ducts [2.52] | 1,008 | 1,008 | A7440 | 1 | L06 |
| CON-LEG101-LR-9100 |  | Installation of Sand encased duct banks for secondary network [Local – 06 ] | 5d | 2026-08-24 A | 2027-06-15 | CON-LEG101-LR-9000, CON-LEG101-EN-3440 | 80% | 1d | 2027-04-03 | 2027-04-07 | 30.05d | 0d | Truck [48 h]; Bucket [48 h]; Compactor [48 h]; Labor [50 h]; Driver [50 h]; Eq. Operator [100 h]; Carpenter [50 h]; Steel Fixer [50 h]; Mason [50 h]; Electrician [50 h]; 2 x 32 mm HDPE sub-ducts [46.53]; 6-ways ducts, 50mm diameter, (HDPE TYPE) + 6 x 32 mm HDPE sub-ducts [45.99] | 13,851 | 11,080.8 | A7140 | 0.8 | L06 |
| CON-LEG101-LR-9200 |  | Installation of Sand and soil encased duct banks, for combined network of primary and secondary [Local – 06 ] | 4d | 2026-08-24 A | 2027-06-16 | CON-LEG101-LR-9100, CON-LEG101-EN-3440 | 80% | 0.8d | 2027-04-08 | 2027-04-12 | 30.05d | 0d | Truck [96 h]; Bucket [96 h]; Compactor [96 h]; Labor [100 h]; Driver [100 h]; Eq. Operator [200 h]; Carpenter [100 h]; Steel Fixer [100 h]; Mason [100 h]; Electrician [100 h]; 4 x 32 mm HDPE sub-ducts [9.22]; 6-ways ducts, 50mm diameter, (HDPE TYPE) + 2 x 32 mm HDPE sub-ducts [3.27] | 3,315.5 | 2,652.4 | A7300 | 0.8 | L06 |
|  | 11 | **CCTV feeding system and GSM** |  | 2026-06-06 | 2026-09-24 |  |  |  |  |  |  |  |  |  |  |  |  |  |
| CON-LEG101-LR-9920 |  | Installation of 25 Meters pole for CCTV Cameras [Local – 06 ] | 4d | 2026-06-06 A | 2026-07-12 A | CON-LEG101-LR-9760, CON-LEG101-PR-3870 | 100% |  | 2027-03-03 | 2027-03-07 |  |  | Truck [48 h]; Bucket [48 h]; Compactor [48 h]; Labor [50 h]; Driver [50 h]; Eq. Operator [100 h]; Carpenter [50 h]; Steel Fixer [50 h]; Mason [50 h]; Electrician [50 h]; "25 Meters pole for CCTV Cameras including : [0.67] | 87,100 | 87,100 | A8660 | 1 | L06 |
| CON-LEG101-LR-10010 |  | Installation of Short Range wireless point to point wireless bridge [Local – 06 ] | 4d | 2026-07-20 A | 2026-09-24 A | CON-LEG101-LR-9920, CON-LEG101-PR-3910 | 100% |  | 2027-03-30 | 2027-04-04 |  |  | Truck [48 h]; Bucket [48 h]; Compactor [48 h]; Labor [50 h]; Driver [50 h]; Eq. Operator [100 h]; Carpenter [50 h]; Steel Fixer [50 h]; Mason [50 h]; Electrician [50 h]; Short Range wireless point to point wireless bridge |  |  | A8780 | 0.9 | L06 |
| CON-LEG101-LR-9510 |  | Installation of 8POE ports Industrial Switches for remote poles [Local – 06 ] | 7d | 2026-07-20 A | 2026-09-24 A | CON-LEG101-LR-8900, CON-LEG101-PR-3410 | 100% |  | 2027-03-14 | 2027-03-22 |  |  | Truck [48 h]; Bucket [48 h]; Compactor [48 h]; Labor [50 h]; Driver [50 h]; Eq. Operator [100 h]; Carpenter [50 h]; Steel Fixer [50 h]; Mason [50 h]; Electrician [50 h]; 8POE ports Industrial Switches for remote poles |  |  | A7830 | 0.9 | L06 |
| CON-LEG101-LR-9680 |  | Installation of IP Outdoor CCTV POE Camera,5 MP, Metal Housing [Local – 06 ] | 4d | 2026-07-20 A | 2026-09-24 A | CON-LEG101-LR-9510, CON-LEG101-PR-3610 | 100% |  | 2027-03-22 | 2027-03-27 |  |  | Truck [48 h]; Bucket [48 h]; Compactor [48 h]; Labor [50 h]; Driver [50 h]; Eq. Operator [100 h]; Carpenter [50 h]; Steel Fixer [50 h]; Mason [50 h]; Electrician [50 h]; IP Outdoor CCTV POE Camera,5 MP, Metal Housing [1.34] | 6,700 | 6,700 | A8160 | 0.9 | L06 |
| CON-LEG101-LR-9760 |  | Installation of Outdoor PTZ IP66 [Local – 06 ] | 3d | 2026-07-20 A | 2026-09-24 A | CON-LEG101-LR-9680, CON-LEG101-PR-3650 | 100% |  | 2027-03-27 | 2027-03-30 |  |  | Truck [48 h]; Bucket [48 h]; Compactor [48 h]; Labor [50 h]; Driver [50 h]; Eq. Operator [100 h]; Carpenter [50 h]; Steel Fixer [50 h]; Mason [50 h]; Electrician [50 h]; "Outdoor PTZ with IR, HDTV 1080 and 31x optical, 12x digital, total 372x zoom, H264/265 with Motion JPEG. [0.67] | 23,450 | 23,450 | A8270 | 0.9 | L06 |
|  | 12 | **Earthing System** |  | 2027-07-27 | 2027-07-31 |  |  |  |  |  |  |  |  |  |  |  |  |  |
| CON-LEG101-LR-15140 |  | Installation of Earthing for Distribution panels,SL feeder pillars, KWH, Unit substations and RMU [Local – 06 ] | 3d | 2027-07-27 | 2027-07-31 | CON-LEG101-LR-10010, CON-LEG101-LR-9920, CON-LEG101-LR-7550, CON-LEG101-LR-7470 |  |  |  |  | 20.3d | 66.7d | Earthing for Distribution panels,SL feeder pillars, KWH, Unit substations and RMU; Crane [48 h]; Labor [100 h]; Eq. Operator [50 h]; Electrician [100 h] |  |  | A5850 |  | L06 |
|  | 9 | **Road Lighting** |  | 2026-03-16 | 2027-07-29 |  |  |  |  |  |  |  |  |  |  |  |  |  |
| CON-LEG101-LR-8150 |  | Installation of Lighting poles [Local – 06 ] | 10d | 2026-03-16 A | 2026-08-17 A | CON-LEG101-PR-1950, CON-LEG101-LR-7850, CON-LEG101-LR-8140, CON-LEG101-PR-1910 | 100% |  | 2027-02-20 | 2027-03-03 |  |  | Lighting poles with 1 arm, height of (8 ) meters, including the power distribution box, cables, and RCC foundation. [30.15]; Excavator [48 h]; Truck [48 h]; Crane [48 h]; Labor [150 h]; Driver [50 h]; Eq. Operator [100 h]; Carpenter [50 h]; Steel Fixer [50 h]; Mason [50 h]; Electrician [150 h] | 102,510 | 102,510 | A5600 | 1 | L06 |
| CON-LEG101-LR-7470 |  | Installation of Unit Substation Including concrete foundations and fencing [Local – 06 ] | 4d | 2026-07-11 A | 2027-07-22 | CON-LEG101-LR-8150, CON-LEG101-LR-9510, CON-LEG101-EN-3310, CON-LEG101-EN-3320, CON-LEG101-EN-3330, CON-LEG101-EN-3360, CON-LEG101-PR-1890 | 30% | 2.8d | 2027-04-28 | 2027-05-03 | 20.3d | 0d | Unit Substation 13.8/0.4 K V, 500kVA ,Including concrete foundations and fencing, According to the specifications and standards of SEC; Excavator [48 h]; Truck [48 h]; Bucket [48 h]; Compactor [48 h]; Labor [100 h]; Skilled Labor [50 h]; Driver [50 h]; Eq. Operator [150 h]; Electrician [100 h] |  |  | A4610 | 0.3 | L06 |
| CON-LEG101-LR-8250 |  | Installation of Street Lighting Luminaire [Local – 06 ] | 4d | 2026-07-22 A | 2026-08-17 A | CON-LEG101-LR-8150, CON-LEG101-PR-1920 | 100% |  | 2027-05-01 | 2027-05-05 |  |  | Street Lighting( LED) Luminous efficacy ? 120Lum/w complete with control gear and lamp, (100) WATT. Max. [30.15]; Crane [48 h]; Labor [150 h]; Skilled Labor [100 h]; Eq. Operator [50 h]; Electrician [150 h] | 30,150 | 30,150 | A5740 | 1 | L06 |
| CON-LEG101-LR-8400 |  | Installation of Earthing for Streetlighting feeders for every end pole circuits. [Local – 06 ] | 3d | 2026-08-12 A | 2027-07-29 | CON-LEG101-LR-7550, CON-LEG101-LR-7470, CON-LEG101-PR-1480, CON-LEG101-LR-8250, CON-LEG101-PR-1310 | 30% | 2.1d | 2027-05-26 | 2027-05-30 | 21.2d | 67.6d | Earthing for Streetlighting feeders for every end pole circuits.; Crane [48 h]; Labor [100 h]; Eq. Operator [50 h]; Carpenter [100 h]; Electrician [200 h] |  |  | A5960 | 0.3 | L06 |
| CON-LEG101-LR-7550 |  | Installation of Ring Main Unit RMU [Local – 06 ] | 4d | 2027-07-22 | 2027-07-27 | CON-LEG101-LR-7470, CON-LEG101-PR-2510 |  |  |  |  | 20.3d | 0d | Ring Main Unit RMU, 13.8KV, According to the specifications and standards of SEC; Excavator [48 h]; Truck [48 h]; Bucket [48 h]; Compactor [48 h]; Labor [100 h]; Skilled Labor [50 h]; Driver [50 h]; Eq. Operator [150 h]; Electrician [100 h] |  |  | A4720 |  | L06 |

| ID | WBS | Activity | Duration | Start | Finish | Predecessors | Complete | Planned start | Planned finish | Resources | Cost | Actual cost | Mapping Sheet Activity ID | % A | JEDDAH 1 - Area Name |
| --- | --- | --- | --- | --- | --- | --- | --- | --- | --- | --- | --- | --- | --- | --- | --- |
|  | 7 | **Local – 07** |  | 2026-02-03 | 2027-08-01 |  |  |  |  |  |  |  |  |  |  |
|  | 5 | **TSE Network** |  | 2026-02-03 | 2026-09-05 |  |  |  |  |  |  |  |  |  |  |
|  | 2 | **Pipe Work** |  | 2026-02-03 | 2026-05-31 |  |  |  |  |  |  |  |  |  |  |
| CON-LEG101-LR-1390 |  | Excavation for TSE Network [Local – 07 ] | 7d | 2026-02-03 A | 2026-02-09 A | CON-LEG101-LR-3570, CON-LEG101-LR-3490, CON-LEG101-LR-11650, CON-LEG101-LR-4290, CON-LEG101-LR-2150, CON-LEG101-LR-2850, CON-LEG101-EN-1720, CON-LEG101-EN-1730, CON-LEG101-EN-1740, CON-LEG101-EN-1810, CON-LEG101-LR-2530 | 100% | 2026-11-02 | 2026-11-10 | Excavator [48 h]; Water Tanker [48 h]; Truck [96 h]; Crane [48 h]; Labor [200 h]; Driver [150 h]; Eq. Operator [100 h]; Piping TSE Network - 110mm Diameter Depth: 0.00 m - 1.50 m. [6.9]; Piping TSE Network - 110mm Diameter Depth: 1.51m - 2.50m [10.14]; Piping TSE Network - 200mm Diameter Depth: 0.00 m - 1.50 m. [10.35]; Piping TSE Network - 200mm Diameter Depth: 1.51m - 2.50m [19.95]; Piping TSE Network - 200mm Diameter Depth: 2.51m - 3.50m; Piping TSE Network - 200mm Diameter Depth exceeds 3.50m; Piping TSE Network - 110mm Diameter Depth exceeds 2.50m; Piping TSE Network - 160mm Diameter Depth: 0.00 m - 1.50 m.; Piping TSE Network - 160mm Diameter Depth: 1.51m - 2.50m; Piping TSE Network - 160mm Diameter Depth exceeds 2.50m; Piping TSE Network - 250mm Diameter Depth: 0.00 m - 1.50 m.; Piping TSE Network - 250mm Diameter Depth: 1.51m - 2.50m; Piping TSE Network - 250mm Diameter Depth exceeds 2.50m | 13,047.3 | 13,047.3 | A11020 | 1 | L07 |
| CON-LEG101-LR-1500 |  | Granular bedding for TSE Network [Local – 07 ] | 2d | 2026-02-10 A | 2026-02-19 A | CON-LEG101-LR-1390 | 100% | 2026-11-04 | 2026-11-07 | Loader [48 h]; Truck [48 h]; Driver [50 h]; Eq. Operator [50 h]; Piping TSE Network - 110mm Diameter Depth: 0.00 m - 1.50 m. [1.73]; Piping TSE Network - 110mm Diameter Depth: 1.51m - 2.50m [2.54]; Piping TSE Network - 200mm Diameter Depth: 0.00 m - 1.50 m. [2.59]; Piping TSE Network - 200mm Diameter Depth: 1.51m - 2.50m [4.99]; Piping TSE Network - 200mm Diameter Depth: 2.51m - 3.50m; Piping TSE Network - 200mm Diameter Depth exceeds 3.50m; Piping TSE Network - 110mm Diameter Depth exceeds 2.50m; Piping TSE Network - 160mm Diameter Depth: 0.00 m - 1.50 m.; Piping TSE Network - 160mm Diameter Depth: 1.51m - 2.50m; Piping TSE Network - 160mm Diameter Depth exceeds 2.50m; Piping TSE Network - 250mm Diameter Depth: 0.00 m - 1.50 m.; Piping TSE Network - 250mm Diameter Depth: 1.51m - 2.50m; Piping TSE Network - 250mm Diameter Depth exceeds 2.50m | 3,265.5 | 3,265.5 | A11140 | 1 | L07 |
| CON-LEG101-LR-1610 |  | Installation of Pipe for TSE Network [Local – 07 ] | 7d | 2026-02-11 A | 2026-02-21 A | CON-LEG101-PR-2590, CON-LEG101-LR-1500, CON-LEG101-PR-1690 | 100% | 2026-11-04 | 2026-11-12 | Excavator [48 h]; Crane [48 h]; Labor [150 h]; Skilled Labor [100 h]; Eq. Operator [100 h]; Plumber [50 h]; Pipe Fitter [50 h]; Piping TSE Network - 110mm Diameter Depth: 0.00 m - 1.50 m. [15.53]; Piping TSE Network - 110mm Diameter Depth: 1.51m - 2.50m [22.83]; Piping TSE Network - 200mm Diameter Depth: 0.00 m - 1.50 m. [23.29]; Piping TSE Network - 200mm Diameter Depth: 1.51m - 2.50m [44.9]; Piping TSE Network - 200mm Diameter Depth: 2.51m - 3.50m; Piping TSE Network - 200mm Diameter Depth exceeds 3.50m; Piping TSE Network - 110mm Diameter Depth exceeds 2.50m; Piping TSE Network - 160mm Diameter Depth: 0.00 m - 1.50 m.; Piping TSE Network - 160mm Diameter Depth: 1.51m - 2.50m; Piping TSE Network - 160mm Diameter Depth exceeds 2.50m; Piping TSE Network - 250mm Diameter Depth: 0.00 m - 1.50 m.; Piping TSE Network - 250mm Diameter Depth: 1.51m - 2.50m; Piping TSE Network - 250mm Diameter Depth exceeds 2.50m | 29,366.1 | 29,366.1 | A11260 | 1 | L07 |
| CON-LEG101-LR-1940 |  | Granular Surround for TSE Network [Local – 07 ] | 2d | 2026-02-21 A | 2026-02-22 A | CON-LEG101-LR-1720, CON-LEG101-EN-3450 | 100% | 2026-10-24 | 2026-10-26 | Loader [48 h]; Truck [48 h]; Driver [50 h]; Eq. Operator [50 h]; Piping TSE Network - 110mm Diameter Depth: 0.00 m - 1.50 m. [1.73]; Piping TSE Network - 110mm Diameter Depth: 1.51m - 2.50m [2.54]; Piping TSE Network - 200mm Diameter Depth: 0.00 m - 1.50 m. [2.59]; Piping TSE Network - 200mm Diameter Depth: 1.51m - 2.50m [4.99]; Piping TSE Network - 200mm Diameter Depth: 2.51m - 3.50m; Piping TSE Network - 200mm Diameter Depth exceeds 3.50m; Piping TSE Network - 110mm Diameter Depth exceeds 2.50m; Piping TSE Network - 160mm Diameter Depth: 0.00 m - 1.50 m.; Piping TSE Network - 160mm Diameter Depth: 1.51m - 2.50m; Piping TSE Network - 160mm Diameter Depth exceeds 2.50m; Piping TSE Network - 250mm Diameter Depth: 0.00 m - 1.50 m.; Piping TSE Network - 250mm Diameter Depth: 1.51m - 2.50m; Piping TSE Network - 250mm Diameter Depth exceeds 2.50m | 3,265.5 | 3,265.5 | A11630 | 1 | L07 |
| CON-LEG101-LR-2050 |  | Installation of Micron Marker Magnetic Tape [Local – 07 ] | 3d | 2026-03-24 A | 2026-03-24 A | CON-LEG101-LR-1940 | 100% | 2026-10-21 | 2026-10-25 | Piping TSE Network - 200mm Diameter Depth: 2.51m - 3.50m; Piping TSE Network - 200mm Diameter Depth exceeds 3.50m; Piping TSE Network - 110mm Diameter Depth exceeds 2.50m; Piping TSE Network - 160mm Diameter Depth: 0.00 m - 1.50 m.; Piping TSE Network - 160mm Diameter Depth: 1.51m - 2.50m; Piping TSE Network - 160mm Diameter Depth exceeds 2.50m; Piping TSE Network - 250mm Diameter Depth: 0.00 m - 1.50 m.; Piping TSE Network - 250mm Diameter Depth: 1.51m - 2.50m; Piping TSE Network - 250mm Diameter Depth exceeds 2.50m; Labor [100 h]; Piping TSE Network - 110mm Diameter Depth: 0.00 m - 1.50 m. [1.73]; Piping TSE Network - 110mm Diameter Depth: 1.51m - 2.50m [2.54]; Piping TSE Network - 200mm Diameter Depth: 0.00 m - 1.50 m. [2.59]; Piping TSE Network - 200mm Diameter Depth: 1.51m - 2.50m [4.99] | 3,265.5 | 3,265.5 | A11750 | 1 | L07 |
| CON-LEG101-LR-2160 |  | Backfilling to Subgrade Elevation [Local – 07 ] | 4d | 2026-03-25 A | 2026-03-26 A | CON-LEG101-LR-2050, CON-LEG101-EN-3440 | 100% | 2026-10-25 | 2026-10-29 | Piping TSE Network - 200mm Diameter Depth: 2.51m - 3.50m; Piping TSE Network - 200mm Diameter Depth exceeds 3.50m; Piping TSE Network - 110mm Diameter Depth exceeds 2.50m; Piping TSE Network - 160mm Diameter Depth: 0.00 m - 1.50 m.; Piping TSE Network - 160mm Diameter Depth: 1.51m - 2.50m; Piping TSE Network - 160mm Diameter Depth exceeds 2.50m; Piping TSE Network - 250mm Diameter Depth: 0.00 m - 1.50 m.; Piping TSE Network - 250mm Diameter Depth: 1.51m - 2.50m; Piping TSE Network - 250mm Diameter Depth exceeds 2.50m; Excavator [48 h]; Water Tanker [48 h]; Road Roller [48 h]; Bucket [48 h]; Compactor [48 h]; Labor [100 h]; Driver [50 h]; Eq. Operator [200 h]; Piping TSE Network - 110mm Diameter Depth: 0.00 m - 1.50 m. [3.45]; Piping TSE Network - 110mm Diameter Depth: 1.51m - 2.50m [5.07]; Piping TSE Network - 200mm Diameter Depth: 0.00 m - 1.50 m. [5.18]; Piping TSE Network - 200mm Diameter Depth: 1.51m - 2.50m [9.98] | 6,526.5 | 6,526.5 | A11870 | 1 | L07 |
| CON-LEG101-LR-1720 |  | Testing for TSE Network [Local – 07 ] | 4d | 2026-05-31 A | 2026-05-31 A | CON-LEG101-LR-1610 | 100% | 2026-09-17 | 2026-09-21 | Labor [200 h]; Skilled Labor [100 h]; Pipe Fitter [100 h]; Piping TSE Network - 110mm Diameter Depth: 0.00 m - 1.50 m. [3.45]; Piping TSE Network - 110mm Diameter Depth: 1.51m - 2.50m [5.07]; Piping TSE Network - 200mm Diameter Depth: 0.00 m - 1.50 m. [5.18]; Piping TSE Network - 200mm Diameter Depth: 1.51m - 2.50m [9.98]; Piping TSE Network - 200mm Diameter Depth: 2.51m - 3.50m; Piping TSE Network - 200mm Diameter Depth exceeds 3.50m; Piping TSE Network - 110mm Diameter Depth exceeds 2.50m; Piping TSE Network - 160mm Diameter Depth: 0.00 m - 1.50 m.; Piping TSE Network - 160mm Diameter Depth: 1.51m - 2.50m; Piping TSE Network - 160mm Diameter Depth exceeds 2.50m; Piping TSE Network - 250mm Diameter Depth: 0.00 m - 1.50 m.; Piping TSE Network - 250mm Diameter Depth: 1.51m - 2.50m; Piping TSE Network - 250mm Diameter Depth exceeds 2.50m | 6,526.5 | 6,526.5 | A11380 | 1 | L07 |
|  | 1 | **Valves/Chamber** |  | 2026-05-03 | 2026-09-05 |  |  |  |  |  |  |  |  |  |  |
| CON-LEG101-LR-2270 |  | Installation of Gate (Sluice) valves (Direct buried) [Local – 07 ] | 10d | 2026-05-03 A | 2026-07-15 A | CON-LEG101-LR-2160, CON-LEG101-LR-1610, CON-LEG101-PR-1970, CON-LEG101-LR-2740, CON-LEG101-LR-2530, CON-LEG101-LR-10810, CON-LEG101-LR-2250 | 100% | 2027-01-03 | 2027-01-14 | Excavator [48 h]; Labor [100 h]; Skilled Labor [50 h]; Eq. Operator [50 h]; Pipe Fitter [50 h]; Piping TSE Network - Gate valves, on pipe with diameter 110 mm [4.02]; Piping TSE Network - Gate valves, on pipe with diameter 200 mm [0.67] | 17,420 | 17,420 | A12080 | 1 | L07 |
| CON-LEG101-LR-2540 |  | Installation of Fire Hydrant [Local – 07 ] | 15d | 2026-06-03 A | 2026-09-05 A | CON-LEG101-LR-2160, CON-LEG101-LR-2270, CON-LEG101-PR-2470 | 100% | 2026-12-27 | 2027-01-13 | Piping TSE Network - 3-outlet fire hydrant (2 x 2.5 inch and 1 x 4.5 inch) in the form of a separate dry vacuum cylinder [1.34]; Excavator [48 h]; Labor [150 h]; Skilled Labor [50 h]; Eq. Operator [50 h]; Mason [50 h]; Pipe Fitter [50 h] | 12,060 | 12,060 | A12530 | 1 | L07 |
|  | 6 | **Public Water Utility Distribution** |  | 2026-02-03 | 2026-08-06 |  |  |  |  |  |  |  |  |  |  |
|  | 2 | **Pipe Work** |  | 2026-02-03 | 2026-05-14 |  |  |  |  |  |  |  |  |  |  |
| CON-LEG101-LR-10120 |  | Excavation for Public Water Utility Distribution Piping [Local – 07 ] | 10d | 2026-02-03 A | 2026-02-09 A | CON-LEG101-LR-10810, CON-LEG101-LR-2160, CON-LEG101-LR-3490, CON-LEG101-LR-4290, CON-LEG101-EN-1690, CON-LEG101-EN-1700, CON-LEG101-EN-1710, CON-LEG101-EN-3440 | 100% | 2026-12-14 | 2026-12-26 | Public Water - 110mm Diameter Depth: 0.00 m - 1.50 m. [20.19]; Public Water - 110mm Diameter Depth: 1.51 m - 2.50 m. [13.18]; Excavator [48 h]; Water Tanker [48 h]; Truck [96 h]; Crane [48 h]; Labor [200 h]; Driver [150 h]; Eq. Operator [100 h]; Public Water - 160mm Diameter Depth: 0.00 m - 1.50 m. | 7,192.8 | 7,192.8 | A9100 | 1 | L07 |
| CON-LEG101-LR-10220 |  | Granular bedding for Public Water Utility Distribution Piping [Local – 07 ] | 4d | 2026-02-10 A | 2026-02-19 A | CON-LEG101-LR-10120 | 100% | 2026-12-17 | 2026-12-22 | Public Water - 110mm Diameter Depth: 0.00 m - 1.50 m. [5.05]; Public Water - 110mm Diameter Depth: 1.51 m - 2.50 m. [3.3]; Loader [48 h]; Truck [48 h]; Driver [50 h]; Eq. Operator [50 h]; Public Water - 160mm Diameter Depth: 0.00 m - 1.50 m. | 1,800 | 1,800 | A9220 | 1 | L07 |
| CON-LEG101-LR-10320 |  | Installation of Pipe for Public Water Utility Distribution Piping [Local – 07 ] | 10d | 2026-02-11 A | 2026-02-21 A | CON-LEG101-PR-4010, CON-LEG101-LR-10220, CON-LEG101-PR-1660 | 100% | 2026-12-17 | 2026-12-29 | Public Water - 110mm Diameter Depth: 0.00 m - 1.50 m. [45.44]; Public Water - 110mm Diameter Depth: 1.51 m - 2.50 m. [29.65]; Excavator [48 h]; Crane [48 h]; Labor [150 h]; Skilled Labor [100 h]; Eq. Operator [100 h]; Plumber [50 h]; Pipe Fitter [50 h]; Public Water - 160mm Diameter Depth: 0.00 m - 1.50 m. | 16,184.7 | 16,184.7 | A9340 | 1 | L07 |
| CON-LEG101-LR-10620 |  | Granular Surround for Public Water Utility Distribution Piping [Local – 07 ] | 3d | 2026-02-21 A | 2026-02-22 A | CON-LEG101-LR-10520, CON-LEG101-EN-3450 | 100% | 2026-12-12 | 2026-12-15 | Public Water - 110mm Diameter Depth: 0.00 m - 1.50 m. [5.05]; Public Water - 110mm Diameter Depth: 1.51 m - 2.50 m. [3.3]; Loader [48 h]; Truck [48 h]; Driver [50 h]; Eq. Operator [50 h]; Public Water - 160mm Diameter Depth: 0.00 m - 1.50 m. | 1,800 | 1,800 | A9730 | 1 | L07 |
| CON-LEG101-LR-10520 |  | Concrete encasement, pipe dia 110 mm [Local – 07 ] | 6d | 2026-03-17 A | 2026-03-17 A | CON-LEG101-LR-10420, CON-LEG101-EN-3450, CON-LEG101-PR-1430 | 100% | 2026-12-01 | 2026-12-08 | Labor [200 h]; Carpenter [50 h]; Mason [100 h]; Public Water - Concrete encasement, pipe dia 110 mm [25.76] | 9,016 | 9,016 | A9620 | 1 | L07 |
| CON-LEG101-LR-10720 |  | Installation of Micron Marker Magnetic Tape [Local – 07 ] | 3d | 2026-03-24 A | 2026-03-24 A | CON-LEG101-LR-10620 | 100% | 2026-12-08 | 2026-12-12 | Public Water - 110mm Diameter Depth: 0.00 m - 1.50 m. [5.05]; Public Water - 110mm Diameter Depth: 1.51 m - 2.50 m. [3.3]; Labor [100 h]; Public Water - 160mm Diameter Depth: 0.00 m - 1.50 m. | 1,800 | 1,800 | A9850 | 1 | L07 |
| CON-LEG101-LR-10820 |  | Backfilling to Subgrade Elevation [Local – 07 ] | 2d | 2026-03-25 A | 2026-03-26 A | CON-LEG101-LR-10720, CON-LEG101-EN-3440 | 100% | 2026-12-12 | 2026-12-14 | Public Water - 110mm Diameter Depth: 0.00 m - 1.50 m. [10.1]; Public Water - 110mm Diameter Depth: 1.51 m - 2.50 m. [6.59]; Excavator [48 h]; Water Tanker [48 h]; Road Roller [48 h]; Bucket [48 h]; Compactor [48 h]; Labor [100 h]; Driver [50 h]; Eq. Operator [200 h]; Public Water - 160mm Diameter Depth: 0.00 m - 1.50 m. | 3,597.3 | 3,597.3 | A9970 | 1 | L07 |
| CON-LEG101-LR-10420 |  | Testing for Public Water Utility Distribution Piping [Local – 07 ] | 3d | 2026-05-13 A | 2026-05-14 A | CON-LEG101-LR-10320 | 100% | 2026-10-01 | 2026-10-05 | Public Water - 110mm Diameter Depth: 0.00 m - 1.50 m. [10.1]; Public Water - 110mm Diameter Depth: 1.51 m - 2.50 m. [6.59]; Labor [200 h]; Skilled Labor [100 h]; Pipe Fitter [100 h]; Public Water - 160mm Diameter Depth: 0.00 m - 1.50 m. | 3,597.3 | 3,597.3 | A9470 | 1 | L07 |
|  | 1 | **Valves/Chamber** |  | 2026-05-03 | 2026-08-06 |  |  |  |  |  |  |  |  |  |  |
| CON-LEG101-LR-1080 |  | Installation of Gate (Sluice) valves (Direct buried) [Local – 07 ] | 5d | 2026-05-03 A | 2026-08-06 A | CON-LEG101-LR-10820, CON-LEG101-LR-10320, CON-LEG101-PR-1960, CON-LEG101-LR-2540 | 100% | 2027-02-01 | 2027-02-07 | Public Water - Gate valves, on pipe with diameter 110 mm [2.01]; Excavator [48 h]; Labor [100 h]; Skilled Labor [50 h]; Eq. Operator [50 h]; Pipe Fitter [50 h] | 6,030 | 6,030 | A10170 | 1 | L07 |

| ID | WBS | Activity | Duration | Start | Finish | Predecessors | Complete | Remaining | Planned start | Planned finish | Total float | Free float | Resources | Cost | Actual cost | Mapping Sheet Activity ID | % A | JEDDAH 1 - Area Name |
| --- | --- | --- | --- | --- | --- | --- | --- | --- | --- | --- | --- | --- | --- | --- | --- | --- | --- | --- |
|  | 1 | **Electrical Works** |  | 2026-06-01 | 2026-07-27 |  |  |  |  |  |  |  |  |  |  |  |  |  |
|  | 3 | **Low Voltage** |  | 2026-06-01 | 2026-07-27 |  |  |  |  |  |  |  |  |  |  |  |  |  |
| CON-LEG101-LR-8060 |  | Installation of Low Voltage Cables Duct Banks [Local – 07 ] | 3d | 2026-06-01 A | 2026-06-03 A | CON-LEG101-LR-7860, CON-LEG101-PR-1320 | 100% |  | 2027-01-19 | 2027-01-23 |  |  | Truck [48 h]; Bucket [48 h]; Compactor [48 h]; Labor [50 h]; Driver [50 h]; Eq. Operator [100 h]; Carpenter [50 h]; Steel Fixer [50 h]; Mason [50 h]; Electrician [50 h]; Duct bank for (3) cables [0.67]; Duct bank for (1) cables [4.36]; Duct bank for (2) cables [1.68] | 2,264.5 | 2,264.5 | A5470 | 1 | L07 |
| CON-LEG101-LR-7860 |  | Excavation works for Low Voltage Cables [Local – 07 ] | 7d | 2026-07-22 A | 2026-07-25 A | CON-LEG101-LR-4290, CON-LEG101-LR-11650, CON-LEG101-LR-3490, CON-LEG101-LR-3570, CON-LEG101-LR-2160, CON-LEG101-LR-10120, CON-LEG101-LR-6960, CON-LEG101-EN-1680, CON-LEG101-EN-3440 | 100% |  | 2027-02-27 | 2027-03-06 |  |  | Excavator [48 h]; Truck [48 h]; Labor [200 h]; Driver [50 h]; Eq. Operator [50 h] |  |  | A5190 | 1 | L07 |
| CON-LEG101-LR-7960 |  | Installation of Low Voltage Cables [Local – 07 ] | 7d | 2026-07-25 A | 2026-07-27 A | CON-LEG101-LR-8060, CON-LEG101-LR-7860, CON-LEG101-PR-1900 | 100% |  | 2027-03-07 | 2027-03-14 |  |  | Excavator [48 h]; Truck [48 h]; Bucket [48 h]; Compactor [48 h]; Labor [100 h]; Skilled Labor [50 h]; Driver [50 h]; Eq. Operator [150 h]; Electrician [100 h]; Stranded armored Cables, Copper, 4C,50mm² XLPE /SWA/PVC [0.27]; Stranded armored Cables, Copper, 4C,35mm² XLPE/SWA /PVC [34.84]; Stranded armored Cables, Copper, 4xC16mm² XLPE /SWA/PVC [227.8]; Single Core Cable, Copper 1C,16mm² CU/PVC For Earth [34.84]; Single Core Cable, Copper 1C,10mm² CU/PVC For Earth [227.8]; Single Core Cable, Copper 1C,25mm² CU/PVC For Earth [0.27] | 20,746.6 | 20,746.6 | A5300 | 1 | L07 |
|  | 10 | **Telecommunications** |  | 2026-05-20 | 2026-09-10 |  |  |  |  |  |  |  |  |  |  |  |  |  |
| CON-LEG101-LR-9310 |  | Installation of Concrete encased duct banks for for combined network of primary and secondary [Local – 07 ] | 2d | 2026-05-20 A | 2026-05-24 A | CON-LEG101-PR-3250, CON-LEG101-LR-9210, CON-LEG101-PR-1430 | 100% |  | 2027-02-03 | 2027-02-04 |  |  | Truck [48 h]; Bucket [48 h]; Compactor [48 h]; Labor [50 h]; Driver [50 h]; Eq. Operator [100 h]; Carpenter [50 h]; Steel Fixer [50 h]; Mason [50 h]; Electrician [50 h]; 6 x 32 mm HDPE sub-ducts [0.63] | 252 | 252 | A7450 | 1 | L07 |
| CON-LEG101-LR-9410 |  | Installation of Reinforced concrete manhole [Local – 07 ] | 4d | 2026-05-20 A | 2026-07-06 A | CON-LEG101-LR-9310, CON-LEG101-PR-3260 | 100% |  | 2027-02-16 | 2027-02-20 |  |  | Truck [48 h]; Bucket [48 h]; Compactor [48 h]; Labor [50 h]; Driver [50 h]; Eq. Operator [100 h]; Carpenter [50 h]; Steel Fixer [50 h]; Mason [50 h]; Electrician [50 h]; Reinforced concrete manhole Type 1- 1200x1500x1200mm [0.67]; Reinforced concrete manhole Type 2- 1200x1500x1200mm [2.01] | 45,560 | 45,560 | A7600 | 1 | L07 |
| CON-LEG101-LR-8910 |  | Installation of Sand and soil encased duct banks for primary network [Local – 07 ] | 4d | 2026-08-08 A | 2026-09-10 A | CON-LEG101-LR-7860, CON-LEG101-EN-3280, CON-LEG101-EN-3440, CON-LEG101-LR-7960 SS+3d | 100% |  | 2027-03-13 | 2027-03-16 |  |  | Truck [48 h]; Bucket [48 h]; Compactor [48 h]; Labor [50 h]; Driver [50 h]; Eq. Operator [100 h]; Carpenter [50 h]; Steel Fixer [50 h]; Mason [50 h]; Electrician [50 h]; 6-ways ducts, 50mm diameter, (HDPE TYPE) . [74.06]; 6-ways ducts, 50mm diameter, (HDPE TYPE) + 2 x 32 mm HDPE sub-ducts [34.59] | 16,248.7 | 16,248.7 | A6850 | 1 | L07 |
| CON-LEG101-LR-9010 |  | Installation of Concrete encased duct banks for primary network [Local – 07 ] | 2d | 2026-08-08 A | 2026-09-10 A | CON-LEG101-PR-3180, CON-LEG101-PR-4020, CON-LEG101-LR-8910, CON-LEG101-PR-1430 | 100% |  | 2027-03-17 | 2027-03-18 |  |  | Truck [48 h]; Bucket [48 h]; Compactor [48 h]; Labor [50 h]; Driver [50 h]; Eq. Operator [100 h]; Carpenter [50 h]; Steel Fixer [50 h]; Mason [50 h]; Electrician [50 h]; 6-ways ducts, 50mm diameter, (HDPE TYPE) + 4 x 32 mm HDPE sub-ducts [29.19]; 6-ways ducts, 50mm diameter, (HDPE TYPE) . [11.4] | 7,388.25 | 7,388.25 | A6990 | 1 | L07 |
| CON-LEG101-LR-9110 |  | Installation of Sand encased duct banks for secondary network [Local – 07 ] | 3d | 2026-08-08 A | 2026-09-10 A | CON-LEG101-LR-9010, CON-LEG101-EN-3440 | 100% |  | 2027-03-20 | 2027-03-22 |  |  | Truck [48 h]; Bucket [48 h]; Compactor [48 h]; Labor [50 h]; Driver [50 h]; Eq. Operator [100 h]; Carpenter [50 h]; Steel Fixer [50 h]; Mason [50 h]; Electrician [50 h]; 2 x 32 mm HDPE sub-ducts [11.63]; 6-ways ducts, 50mm diameter, (HDPE TYPE) + 6 x 32 mm HDPE sub-ducts [11.5] | 3,463 | 3,463 | A7150 | 1 | L07 |
| CON-LEG101-LR-9210 |  | Installation of Sand and soil encased duct banks, for combined network of primary and secondary [Local – 07 ] | 4d | 2026-08-08 A | 2026-09-10 A | CON-LEG101-LR-9110, CON-LEG101-EN-3440 | 100% |  | 2027-03-23 | 2027-03-27 |  |  | Truck [48 h]; Bucket [48 h]; Compactor [48 h]; Labor [50 h]; Driver [50 h]; Eq. Operator [100 h]; Carpenter [50 h]; Steel Fixer [50 h]; Mason [50 h]; Electrician [50 h]; 4 x 32 mm HDPE sub-ducts [2.3]; 6-ways ducts, 50mm diameter, (HDPE TYPE) + 2 x 32 mm HDPE sub-ducts [0.82] | 829 | 829 | A7310 | 1 | L07 |
|  | 11 | **CCTV feeding system and GSM** |  | 2026-07-22 | 2026-09-20 |  |  |  |  |  |  |  |  |  |  |  |  |  |
| CON-LEG101-LR-10020 |  | Installation of Short Range wireless point to point wireless bridge [Local – 07 ] | 7d | 2026-07-22 A | 2026-09-20 A | CON-LEG101-LR-8910, CON-LEG101-PR-3910 | 100% |  | 2027-03-10 | 2027-03-17 |  |  | Truck [48 h]; Bucket [48 h]; Compactor [48 h]; Labor [50 h]; Driver [50 h]; Eq. Operator [100 h]; Carpenter [50 h]; Steel Fixer [50 h]; Mason [50 h]; Electrician [50 h]; Short Range wireless point to point wireless bridge |  |  | A8790 | 0.9 | L07 |
|  | 12 | **Earthing System** |  | 2027-07-27 | 2027-08-01 |  |  |  |  |  |  |  |  |  |  |  |  |  |
| CON-LEG101-LR-15130 |  | Installation of Earthing for Distribution panels,SL feeder pillars, KWH, Unit substations and RMU [Local – 07 ] | 4d | 2027-07-27 | 2027-08-01 | CON-LEG101-LR-9410, CON-LEG101-LR-10020, CON-LEG101-LR-7560, CON-LEG101-LR-7480 |  |  |  |  | 18.9d | 65.3d | Earthing for Distribution panels,SL feeder pillars, KWH, Unit substations and RMU [1.34]; Crane [48 h]; Labor [100 h]; Eq. Operator [50 h]; Electrician [100 h] | 5,360 |  | A5850 |  | L07 |
|  | 9 | **Road Lighting** |  | 2026-05-17 | 2027-07-29 |  |  |  |  |  |  |  |  |  |  |  |  |  |
| CON-LEG101-LR-8160 |  | Installation of Lighting poles [Local – 07 ] | 7d | 2026-05-17 A | 2026-08-17 A | CON-LEG101-PR-1950, CON-LEG101-LR-7860, CON-LEG101-LR-8150 SS, CON-LEG101-PR-1910 | 100% |  | 2027-03-09 | 2027-03-17 |  |  | Lighting poles with 1 arm, height of (8 ) meters, including the power distribution box, cables, and RCC foundation. [20.1]; Excavator [48 h]; Truck [48 h]; Crane [48 h]; Labor [150 h]; Driver [50 h]; Eq. Operator [100 h]; Carpenter [50 h]; Steel Fixer [50 h]; Mason [50 h]; Electrician [150 h] | 68,340 | 68,340 | A5610 | 1 | L07 |
| CON-LEG101-LR-7480 |  | Installation of Unit Substation Including concrete foundations and fencing [Local – 07 ] | 4d | 2026-07-12 A | 2027-07-22 | CON-LEG101-LR-8160, CON-LEG101-LR-10020, CON-LEG101-EN-3310, CON-LEG101-EN-3320, CON-LEG101-EN-3330, CON-LEG101-EN-3360, CON-LEG101-PR-1890 | 40% | 3.2d | 2027-04-28 | 2027-05-03 | 18.9d | 0d | Unit Substation 13.8/0.4 K V, 500kVA ,Including concrete foundations and fencing, According to the specifications and standards of SEC [0.67]; Excavator [48 h]; Truck [48 h]; Bucket [48 h]; Compactor [48 h]; Labor [100 h]; Skilled Labor [50 h]; Driver [50 h]; Eq. Operator [150 h]; Electrician [100 h] | 56,950 | 22,780 | A4620 | 0.4 | L07 |
| CON-LEG101-LR-8260 |  | Installation of Street Lighting Luminaire [Local – 07 ] | 7d | 2026-07-18 A | 2026-08-17 A | CON-LEG101-LR-8160, CON-LEG101-PR-1920 | 100% |  | 2027-04-26 | 2027-05-04 |  |  | Street Lighting( LED) Luminous efficacy ? 120Lum/w complete with control gear and lamp, (100) WATT. Max. [20.1]; Crane [48 h]; Labor [150 h]; Skilled Labor [100 h]; Eq. Operator [50 h]; Electrician [150 h] | 20,100 | 20,100 | A5750 | 1 | L07 |
| CON-LEG101-LR-8410 |  | Installation of Earthing for Streetlighting feeders for every end pole circuits. [Local – 07 ] | 4d | 2026-08-26 A | 2027-07-29 | CON-LEG101-LR-7480, CON-LEG101-LR-7560, CON-LEG101-PR-1480, CON-LEG101-LR-8260, CON-LEG101-PR-1310 | 50% | 2d | 2027-05-26 | 2027-05-31 | 20.9d | 67.3d | Earthing for Streetlighting feeders for every end pole circuits. [4.02]; Crane [48 h]; Labor [100 h]; Eq. Operator [50 h]; Carpenter [100 h]; Electrician [200 h] | 8,040 | 4,020 | A5970 | 0.5 | L07 |
| CON-LEG101-LR-7560 |  | Installation of Ring Main Unit RMU [Local – 07 ] | 4d | 2027-07-22 | 2027-07-27 | CON-LEG101-LR-7480, CON-LEG101-PR-2510 |  |  |  |  | 18.9d | 0d | Ring Main Unit RMU, 13.8KV, According to the specifications and standards of SEC [0.67]; Excavator [48 h]; Truck [48 h]; Bucket [48 h]; Compactor [48 h]; Labor [100 h]; Skilled Labor [50 h]; Driver [50 h]; Eq. Operator [150 h]; Electrician [100 h] | 50,250 |  | A4730 |  | L07 |
|  | 8 | **Local – 08** |  | 2026-01-19 | 2027-07-29 |  |  |  |  |  |  |  |  |  |  |  |  |  |
|  | 5 | **TSE Network** |  | 2026-01-19 | 2026-12-12 |  |  |  |  |  |  |  |  |  |  |  |  |  |
|  | 2 | **Pipe Work** |  | 2026-01-19 | 2026-04-16 |  |  |  |  |  |  |  |  |  |  |  |  |  |
| CON-LEG101-LR-1400 |  | Excavation for TSE Network [Local – 08 ] | 11d | 2026-01-19 A | 2026-01-25 A | CON-LEG101-LR-4300, CON-LEG101-LR-11740, CON-LEG101-LR-3670, CON-LEG101-EN-1720, CON-LEG101-EN-1730, CON-LEG101-EN-1740, CON-LEG101-EN-1810 | 100% |  | 2026-07-16 | 2026-07-29 |  |  | Piping TSE Network - 200mm Diameter Depth exceeds 3.50m [2.68]; Excavator [33 h]; Water Tanker [22 h]; Truck [96 h]; Crane [48 h]; Labor [200 h]; Driver [150 h]; Eq. Operator [100 h]; Piping TSE Network - 110mm Diameter Depth: 0.00 m - 1.50 m. [6.9]; Piping TSE Network - 110mm Diameter Depth: 1.51m - 2.50m [10.14]; Piping TSE Network - 200mm Diameter Depth: 0.00 m - 1.50 m. [33.12]; Piping TSE Network - 200mm Diameter Depth: 1.51m - 2.50m [63.85]; Piping TSE Network - 200mm Diameter Depth: 2.51m - 3.50m; Piping TSE Network - 110mm Diameter Depth exceeds 2.50m; Piping TSE Network - 160mm Diameter Depth: 0.00 m - 1.50 m.; Piping TSE Network - 160mm Diameter Depth: 1.51m - 2.50m; Piping TSE Network - 160mm Diameter Depth exceeds 2.50m; Piping TSE Network - 250mm Diameter Depth: 0.00 m - 1.50 m.; Piping TSE Network - 250mm Diameter Depth: 1.51m - 2.50m; Piping TSE Network - 250mm Diameter Depth exceeds 2.50m | 37,019.1 | 37,019.1 | A11030 | 1 | L08 |
| CON-LEG101-LR-1510 |  | Granular bedding for TSE Network [Local – 08 ] | 9d | 2026-01-26 A | 2026-02-11 A | CON-LEG101-LR-1400 | 100% |  | 2026-07-15 | 2026-07-26 |  |  | Piping TSE Network - 200mm Diameter Depth exceeds 3.50m [0.67]; Loader [48 h]; Truck [48 h]; Driver [50 h]; Eq. Operator [50 h]; Piping TSE Network - 110mm Diameter Depth: 0.00 m - 1.50 m. [1.73]; Piping TSE Network - 110mm Diameter Depth: 1.51m - 2.50m [2.54]; Piping TSE Network - 200mm Diameter Depth: 0.00 m - 1.50 m. [8.28]; Piping TSE Network - 200mm Diameter Depth: 1.51m - 2.50m [15.96]; Piping TSE Network - 200mm Diameter Depth: 2.51m - 3.50m; Piping TSE Network - 110mm Diameter Depth exceeds 2.50m; Piping TSE Network - 160mm Diameter Depth: 0.00 m - 1.50 m.; Piping TSE Network - 160mm Diameter Depth: 1.51m - 2.50m; Piping TSE Network - 160mm Diameter Depth exceeds 2.50m; Piping TSE Network - 250mm Diameter Depth: 0.00 m - 1.50 m.; Piping TSE Network - 250mm Diameter Depth: 1.51m - 2.50m; Piping TSE Network - 250mm Diameter Depth exceeds 2.50m | 9,256.2 | 9,256.2 | A11150 | 1 | L08 |
| CON-LEG101-LR-1620 |  | Installation of Pipe for TSE Network [Local – 08 ] | 15d | 2026-01-27 A | 2026-02-18 A | CON-LEG101-PR-2590, CON-LEG101-LR-1510, CON-LEG101-PR-1690 | 100% |  | 2026-07-26 | 2026-08-12 |  |  | Piping TSE Network - 200mm Diameter Depth exceeds 3.50m [6.03]; Excavator [31.2 h]; Crane [48 h]; Labor [150 h]; Skilled Labor [100 h]; Eq. Operator [100 h]; Plumber [50 h]; Pipe Fitter [50 h]; Piping TSE Network - 110mm Diameter Depth: 0.00 m - 1.50 m. [15.53]; Piping TSE Network - 110mm Diameter Depth: 1.51m - 2.50m [22.83]; Piping TSE Network - 200mm Diameter Depth: 0.00 m - 1.50 m. [74.53]; Piping TSE Network - 200mm Diameter Depth: 1.51m - 2.50m [143.66]; Piping TSE Network - 200mm Diameter Depth: 2.51m - 3.50m; Piping TSE Network - 110mm Diameter Depth exceeds 2.50m; Piping TSE Network - 160mm Diameter Depth: 0.00 m - 1.50 m.; Piping TSE Network - 160mm Diameter Depth: 1.51m - 2.50m; Piping TSE Network - 160mm Diameter Depth exceeds 2.50m; Piping TSE Network - 250mm Diameter Depth: 0.00 m - 1.50 m.; Piping TSE Network - 250mm Diameter Depth: 1.51m - 2.50m; Piping TSE Network - 250mm Diameter Depth exceeds 2.50m | 83,299.5 | 83,299.5 | A11270 | 1 | L08 |
| CON-LEG101-LR-1950 |  | Granular Surround for TSE Network [Local – 08 ] | 9d | 2026-01-29 A | 2026-02-19 A | CON-LEG101-LR-1840, CON-LEG101-EN-3450 | 100% |  | 2026-08-13 | 2026-08-24 |  |  | Piping TSE Network - 200mm Diameter Depth exceeds 3.50m [0.67]; Loader [48 h]; Truck [221.33 h]; Driver [122.22 h]; Eq. Operator [50 h]; Piping TSE Network - 110mm Diameter Depth: 0.00 m - 1.50 m. [1.73]; Piping TSE Network - 110mm Diameter Depth: 1.51m - 2.50m [2.54]; Piping TSE Network - 200mm Diameter Depth: 0.00 m - 1.50 m. [8.28]; Piping TSE Network - 200mm Diameter Depth: 1.51m - 2.50m [15.96]; Piping TSE Network - 200mm Diameter Depth: 2.51m - 3.50m; Piping TSE Network - 110mm Diameter Depth exceeds 2.50m; Piping TSE Network - 160mm Diameter Depth: 0.00 m - 1.50 m.; Piping TSE Network - 160mm Diameter Depth: 1.51m - 2.50m; Piping TSE Network - 160mm Diameter Depth exceeds 2.50m; Piping TSE Network - 250mm Diameter Depth: 0.00 m - 1.50 m.; Piping TSE Network - 250mm Diameter Depth: 1.51m - 2.50m; Piping TSE Network - 250mm Diameter Depth exceeds 2.50m | 9,256.2 | 9,256.2 | A11640 | 1 | L08 |
| CON-LEG101-LR-1840 |  | Concrete encasement, pipe dia 110 mm [Local – 08 ] | 2d | 2026-02-11 A | 2026-02-21 A | CON-LEG101-LR-1730, CON-LEG101-EN-3450, CON-LEG101-PR-1430 | 100% |  | 2026-06-11 | 2026-06-14 |  |  | Labor [200 h]; Carpenter [50 h]; Mason [100 h]; Piping TSE Network - Concrete encasement, pipe dia 110 mm [4.58] | 1,603 | 1,603 | A11530 | 1 | L08 |
| CON-LEG101-LR-2060 |  | Installation of Micron Marker Magnetic Tape [Local – 08 ] | 4d | 2026-02-21 A | 2026-02-22 A | CON-LEG101-LR-1950 | 100% |  | 2026-06-09 | 2026-06-14 |  |  | Piping TSE Network - 200mm Diameter Depth: 2.51m - 3.50m; Piping TSE Network - 110mm Diameter Depth exceeds 2.50m; Piping TSE Network - 160mm Diameter Depth: 0.00 m - 1.50 m.; Piping TSE Network - 160mm Diameter Depth: 1.51m - 2.50m; Piping TSE Network - 160mm Diameter Depth exceeds 2.50m; Piping TSE Network - 250mm Diameter Depth: 0.00 m - 1.50 m.; Piping TSE Network - 250mm Diameter Depth: 1.51m - 2.50m; Piping TSE Network - 250mm Diameter Depth exceeds 2.50m; Piping TSE Network - 200mm Diameter Depth exceeds 3.50m [0.67]; Labor [200 h]; Piping TSE Network - 110mm Diameter Depth: 0.00 m - 1.50 m. [1.73]; Piping TSE Network - 110mm Diameter Depth: 1.51m - 2.50m [2.54]; Piping TSE Network - 200mm Diameter Depth: 0.00 m - 1.50 m. [8.28]; Piping TSE Network - 200mm Diameter Depth: 1.51m - 2.50m [15.96] | 9,256.2 | 9,256.2 | A11760 | 1 | L08 |
| CON-LEG101-LR-2170 |  | Backfilling to Subgrade Elevation [Local – 08 ] | 17d | 2026-02-22 A | 2026-02-23 A | CON-LEG101-LR-2060, CON-LEG101-EN-3440 | 100% |  | 2026-06-14 | 2026-07-04 |  |  | Piping TSE Network - 200mm Diameter Depth: 2.51m - 3.50m; Piping TSE Network - 110mm Diameter Depth exceeds 2.50m; Piping TSE Network - 160mm Diameter Depth: 0.00 m - 1.50 m.; Piping TSE Network - 160mm Diameter Depth: 1.51m - 2.50m; Piping TSE Network - 160mm Diameter Depth exceeds 2.50m; Piping TSE Network - 250mm Diameter Depth: 0.00 m - 1.50 m.; Piping TSE Network - 250mm Diameter Depth: 1.51m - 2.50m; Piping TSE Network - 250mm Diameter Depth exceeds 2.50m; Piping TSE Network - 200mm Diameter Depth exceeds 3.50m [1.34]; Excavator [48 h]; Water Tanker [48 h]; Road Roller [48 h]; Bucket [100 h]; Compactor [100 h]; Labor [200 h]; Driver [150 h]; Eq. Operator [200 h]; Piping TSE Network - 110mm Diameter Depth: 0.00 m - 1.50 m. [3.45]; Piping TSE Network - 110mm Diameter Depth: 1.51m - 2.50m [5.07]; Piping TSE Network - 200mm Diameter Depth: 0.00 m - 1.50 m. [16.56]; Piping TSE Network - 200mm Diameter Depth: 1.51m - 2.50m [31.93] | 18,511.2 | 18,511.2 | A11880 | 1 | L08 |
| CON-LEG101-LR-1730 |  | Testing for TSE Network [Local – 08 ] | 9d | 2026-04-15 A | 2026-04-16 A | CON-LEG101-LR-1620 | 100% |  | 2026-06-18 | 2026-06-29 |  |  | Piping TSE Network - 200mm Diameter Depth exceeds 3.50m [1.34]; Labor [200 h]; Skilled Labor [100 h]; Pipe Fitter [100 h]; Piping TSE Network - 110mm Diameter Depth: 0.00 m - 1.50 m. [3.45]; Piping TSE Network - 110mm Diameter Depth: 1.51m - 2.50m [5.07]; Piping TSE Network - 200mm Diameter Depth: 0.00 m - 1.50 m. [16.56]; Piping TSE Network - 200mm Diameter Depth: 1.51m - 2.50m [31.93]; Piping TSE Network - 200mm Diameter Depth: 2.51m - 3.50m; Piping TSE Network - 110mm Diameter Depth exceeds 2.50m; Piping TSE Network - 160mm Diameter Depth: 0.00 m - 1.50 m.; Piping TSE Network - 160mm Diameter Depth: 1.51m - 2.50m; Piping TSE Network - 160mm Diameter Depth exceeds 2.50m; Piping TSE Network - 250mm Diameter Depth: 0.00 m - 1.50 m.; Piping TSE Network - 250mm Diameter Depth: 1.51m - 2.50m; Piping TSE Network - 250mm Diameter Depth exceeds 2.50m | 18,511.2 | 18,511.2 | A11390 | 1 | L08 |

| ID | WBS | Activity | Duration | Start | Finish | Predecessors | Complete | Remaining | Planned start | Planned finish | Total float | Free float | Resources | Cost | Actual cost | Mapping Sheet Activity ID | % A | JEDDAH 1 - Area Name |
| --- | --- | --- | --- | --- | --- | --- | --- | --- | --- | --- | --- | --- | --- | --- | --- | --- | --- | --- |
|  | 1 | **Valves/Chamber** |  | 2026-03-04 | 2026-12-12 |  |  |  |  |  |  |  |  |  |  |  |  |  |
| CON-LEG101-LR-2280 |  | Installation of Gate (Sluice) valves (Direct buried) [Local – 08 ] | 14d | 2026-03-04 A | 2026-08-06 A | CON-LEG101-LR-2170, CON-LEG101-LR-2670, CON-LEG101-LR-2750, CON-LEG101-LR-1620, CON-LEG101-PR-1970 | 100% |  | 2026-08-04 | 2026-08-20 |  |  | Excavator [48 h]; Labor [100 h]; Skilled Labor [50 h]; Eq. Operator [50 h]; Pipe Fitter [50 h]; Piping TSE Network - Gate valves, on pipe with diameter 110 mm [4.02]; Piping TSE Network - Gate valves, on pipe with diameter 200 mm [2.01] | 28,140 | 28,140 | A12090 | 1 | L08 |
| CON-LEG101-LR-2370 |  | Installation of Wash-out Valves [Local – 08 ] | 15d | 2026-03-04 A | 2026-08-06 A | CON-LEG101-LR-2670, CON-LEG101-LR-2280, CON-LEG101-PR-1970 | 100% |  | 2026-08-20 | 2026-09-07 |  |  | Excavator [48 h]; Labor [100 h]; Skilled Labor [50 h]; Eq. Operator [50 h]; Pipe Fitter [50 h]; Piping TSE Network - Wash out valve, on pipes with diameter 110-400 mm [0.67] | 8,040 | 8,040 | A12280 | 1 | L08 |
| CON-LEG101-LR-2450 |  | Installation of Air Valves [Local – 08 ] | 15d | 2026-03-04 A | 2026-08-06 A | CON-LEG101-LR-2750, CON-LEG101-LR-2370, CON-LEG101-PR-1970 | 100% |  | 2026-09-07 | 2026-09-26 |  |  | Excavator [48 h]; Labor [100 h]; Skilled Labor [50 h]; Eq. Operator [50 h]; Pipe Fitter [50 h]; Piping TSE Network - Air valve complete with gate valves, on pipes with diameter less than 315 mm. [1.34] | 12,060 | 12,060 | A12400 | 1 | L08 |
| CON-LEG101-LR-2550 |  | Installation of Fire Hydrant [Local – 08 ] | 21d | 2026-03-05 A | 2026-09-30 A | CON-LEG101-LR-2170, CON-LEG101-LR-2450, CON-LEG101-PR-2470 | 100% |  | 2026-09-26 | 2026-10-20 |  |  | Piping TSE Network - 3-outlet fire hydrant (2 x 2.5 inch and 1 x 4.5 inch) in the form of a separate dry vacuum cylinder [6.03]; Excavator [48 h]; Labor [150 h]; Skilled Labor [50 h]; Eq. Operator [50 h]; Mason [50 h]; Pipe Fitter [50 h] | 54,270 | 54,270 | A12540 | 0.95 | L08 |
| CON-LEG101-LR-2750 |  | Installation of Air Valve chambers [Local – 08 ] | 21d | 2026-04-16 A | 2026-12-12 | CON-LEG101-LR-2670, CON-LEG101-PR-1970 | 95% | 1.05d | 2026-07-11 | 2026-08-04 | 191.9d | 0d | Excavator [48 h]; Labor [100 h]; Skilled Labor [50 h]; Eq. Operator [50 h]; Pipe Fitter [50 h]; Piping TSE Network - Air valve chamber; on less than 315 mm diameter pipeline [0.67] | 26,800 | 25,460 | A12870 | 0.95 | L08 |
| CON-LEG101-LR-2670 |  | Installation of Wash out chambers [Local – 08 ] | 21d | 2026-04-30 A | 2026-12-10 | CON-LEG101-LR-1620, CON-LEG101-PR-1970, CON-LEG101-LR-2170 | 95% | 1.05d | 2026-06-16 | 2026-07-11 | 191.9d | 0d | Excavator [48 h]; Labor [100 h]; Skilled Labor [50 h]; Eq. Operator [50 h]; Pipe Fitter [50 h]; Piping TSE Network - Wash out valve chamber; on 110-400 mm diameter pipeline [1.34] | 53,600 | 50,920 | A12750 | 0.95 | L08 |
|  | 6 | **Public Water Utility Distribution** |  | 2026-03-07 | 2026-08-06 |  |  |  |  |  |  |  |  |  |  |  |  |  |
|  | 2 | **Pipe Work** |  | 2026-03-07 | 2026-04-16 |  |  |  |  |  |  |  |  |  |  |  |  |  |
| CON-LEG101-LR-10130 |  | Excavation for Public Water Utility Distribution Piping [Local – 08 ] | 11d | 2026-03-07 A | 2026-03-10 A | CON-LEG101-LR-2170, CON-LEG101-LR-4300, CON-LEG101-EN-1690, CON-LEG101-EN-1700, CON-LEG101-EN-1710, CON-LEG101-EN-3440 | 100% |  | 2026-06-18 | 2026-07-01 |  |  | Public Water - 110mm Diameter Depth: 0.00 m - 1.50 m. [80.78]; Public Water - 110mm Diameter Depth: 1.51 m - 2.50 m. [52.72]; Excavator [48 h]; Water Tanker [48 h]; Truck [96 h]; Crane [48 h]; Labor [300 h]; Driver [200 h]; Eq. Operator [100 h]; Public Water - 110mm Diameter Depth exceeds 2.50m; Public Water - 160mm Diameter Depth: 1.51m - 2.50m; Public Water - 200mm Diameter Depth: 0.00m -1.50m; Public Water - 160mm Diameter Depth: 0.00 m - 1.50 m.; Public Water - 160mm Diameter Depth exceeds 2.50m; Public Water - 200mm Diameter Depth: 1.51m - 2.50m; Public Water - 200mm Diameter Depth exceeds 2.50m | 28,774.8 | 28,774.8 | A9110 | 1 | L08 |
| CON-LEG101-LR-10230 |  | Granular bedding for Public Water Utility Distribution Piping [Local – 08 ] | 8d | 2026-03-11 A | 2026-03-14 A | CON-LEG101-LR-10130 | 100% |  | 2026-06-25 | 2026-07-05 |  |  | Public Water - 110mm Diameter Depth: 0.00 m - 1.50 m. [20.19]; Public Water - 110mm Diameter Depth: 1.51 m - 2.50 m. [13.18]; Loader [48 h]; Truck [48 h]; Driver [100 h]; Eq. Operator [50 h]; Public Water - 110mm Diameter Depth exceeds 2.50m; Public Water - 160mm Diameter Depth: 1.51m - 2.50m; Public Water - 200mm Diameter Depth: 0.00m -1.50m; Public Water - 160mm Diameter Depth: 0.00 m - 1.50 m.; Public Water - 160mm Diameter Depth exceeds 2.50m; Public Water - 200mm Diameter Depth: 1.51m - 2.50m; Public Water - 200mm Diameter Depth exceeds 2.50m | 7,192.8 | 7,192.8 | A9230 | 1 | L08 |
| CON-LEG101-LR-10330 |  | Installation of Pipe for Public Water Utility Distribution Piping [Local – 08 ] | 11d | 2026-03-15 A | 2026-03-24 A | CON-LEG101-PR-4010, CON-LEG101-LR-10230, CON-LEG101-PR-1660 | 100% |  | 2026-07-05 | 2026-07-18 |  |  | Public Water - 110mm Diameter Depth: 0.00 m - 1.50 m. [181.76]; Public Water - 110mm Diameter Depth: 1.51 m - 2.50 m. [118.61]; Excavator [48 h]; Crane [48 h]; Labor [254.55 h]; Skilled Labor [100 h]; Eq. Operator [100 h]; Plumber [50 h]; Pipe Fitter [50 h]; Public Water - 110mm Diameter Depth exceeds 2.50m; Public Water - 160mm Diameter Depth: 1.51m - 2.50m; Public Water - 200mm Diameter Depth: 0.00m -1.50m; Public Water - 160mm Diameter Depth: 0.00 m - 1.50 m.; Public Water - 160mm Diameter Depth exceeds 2.50m; Public Water - 200mm Diameter Depth: 1.51m - 2.50m; Public Water - 200mm Diameter Depth exceeds 2.50m | 64,741.5 | 64,741.5 | A9350 | 1 | L08 |
| CON-LEG101-LR-10530 |  | Concrete encasement, pipe dia 110 mm [Local – 08 ] | 3d | 2026-03-26 A | 2026-03-26 A | CON-LEG101-LR-10430, CON-LEG101-EN-3450, CON-LEG101-PR-1430 | 100% |  | 2026-07-05 | 2026-07-08 |  |  | Public Water - Concrete encasement, pipe dia 110 mm [12.86]; Labor [200 h]; Carpenter [50 h]; Mason [100 h] | 4,501 | 4,501 | A9630 | 1 | L08 |
| CON-LEG101-LR-10630 |  | Granular Surround for Public Water Utility Distribution Piping [Local – 08 ] | 8d | 2026-03-28 A | 2026-03-28 A | CON-LEG101-LR-10530, CON-LEG101-EN-3450 | 100% |  | 2026-07-08 | 2026-07-18 |  |  | Public Water - 110mm Diameter Depth: 0.00 m - 1.50 m. [20.19]; Public Water - 110mm Diameter Depth: 1.51 m - 2.50 m. [13.18]; Loader [48 h]; Truck [48 h]; Driver [50 h]; Eq. Operator [50 h]; Public Water - 110mm Diameter Depth exceeds 2.50m; Public Water - 160mm Diameter Depth: 1.51m - 2.50m; Public Water - 200mm Diameter Depth: 0.00m -1.50m; Public Water - 160mm Diameter Depth: 0.00 m - 1.50 m.; Public Water - 160mm Diameter Depth exceeds 2.50m; Public Water - 200mm Diameter Depth: 1.51m - 2.50m; Public Water - 200mm Diameter Depth exceeds 2.50m | 7,192.8 | 7,192.8 | A9740 | 1 | L08 |
| CON-LEG101-LR-10730 |  | Installation of Micron Marker Magnetic Tape [Local – 08 ] | 3d | 2026-03-29 A | 2026-03-30 A | CON-LEG101-LR-10630 | 100% |  | 2026-07-18 | 2026-07-21 |  |  | Public Water - 110mm Diameter Depth: 0.00 m - 1.50 m. [20.19]; Public Water - 110mm Diameter Depth: 1.51 m - 2.50 m. [13.18]; Labor [100 h]; Public Water - 110mm Diameter Depth exceeds 2.50m; Public Water - 160mm Diameter Depth: 1.51m - 2.50m; Public Water - 200mm Diameter Depth: 0.00m -1.50m; Public Water - 160mm Diameter Depth: 0.00 m - 1.50 m.; Public Water - 160mm Diameter Depth exceeds 2.50m; Public Water - 200mm Diameter Depth: 1.51m - 2.50m; Public Water - 200mm Diameter Depth exceeds 2.50m | 7,192.8 | 7,192.8 | A9860 | 1 | L08 |
| CON-LEG101-LR-10830 |  | Backfilling to Subgrade Elevation [Local – 08 ] | 7d | 2026-03-31 A | 2026-04-02 A | CON-LEG101-LR-10730, CON-LEG101-EN-3440 | 100% |  | 2026-07-21 | 2026-07-29 |  |  | Public Water - 110mm Diameter Depth: 0.00 m - 1.50 m. [40.39]; Public Water - 110mm Diameter Depth: 1.51 m - 2.50 m. [26.36]; Excavator [48 h]; Water Tanker [48 h]; Road Roller [48 h]; Bucket [48 h]; Compactor [48 h]; Labor [100 h]; Driver [50 h]; Eq. Operator [200 h]; Public Water - 110mm Diameter Depth exceeds 2.50m; Public Water - 160mm Diameter Depth: 1.51m - 2.50m; Public Water - 200mm Diameter Depth: 0.00m -1.50m; Public Water - 160mm Diameter Depth: 0.00 m - 1.50 m.; Public Water - 160mm Diameter Depth exceeds 2.50m; Public Water - 200mm Diameter Depth: 1.51m - 2.50m; Public Water - 200mm Diameter Depth exceeds 2.50m | 14,387.4 | 14,387.4 | A9980 | 1 | L08 |
| CON-LEG101-LR-10430 |  | Testing for Public Water Utility Distribution Piping [Local – 08 ] | 8d | 2026-04-16 A | 2026-04-16 A | CON-LEG101-LR-10330 | 100% |  | 2026-06-29 | 2026-07-08 |  |  | Public Water - 110mm Diameter Depth: 0.00 m - 1.50 m. [40.39]; Public Water - 110mm Diameter Depth: 1.51 m - 2.50 m. [26.36]; Labor [200 h]; Skilled Labor [100 h]; Pipe Fitter [100 h]; Public Water - 110mm Diameter Depth exceeds 2.50m; Public Water - 160mm Diameter Depth: 1.51m - 2.50m; Public Water - 200mm Diameter Depth: 0.00m -1.50m; Public Water - 160mm Diameter Depth: 0.00 m - 1.50 m.; Public Water - 160mm Diameter Depth exceeds 2.50m; Public Water - 200mm Diameter Depth: 1.51m - 2.50m; Public Water - 200mm Diameter Depth exceeds 2.50m | 14,387.4 | 14,387.4 | A9480 | 1 | L08 |
|  | 1 | **Valves/Chamber** |  | 2026-05-03 | 2026-08-06 |  |  |  |  |  |  |  |  |  |  |  |  |  |
| CON-LEG101-LR-1090 |  | Installation of Gate (Sluice) valves (Direct buried) [Local – 08 ] | 5d | 2026-05-03 A | 2026-08-06 A | CON-LEG101-LR-10830, CON-LEG101-LR-10330, CON-LEG101-PR-1960, CON-LEG101-LR-1080 SS | 100% |  | 2027-02-01 | 2027-02-07 |  |  | Public Water - Gate valves, on pipe with diameter 110 mm [4.02]; Excavator [48 h]; Labor [100 h]; Skilled Labor [50 h]; Eq. Operator [50 h]; Pipe Fitter [50 h] | 12,060 | 12,060 | A10180 | 1 | L08 |
|  | 1 | **Electrical Works** |  | 2026-07-07 | 2027-07-04 |  |  |  |  |  |  |  |  |  |  |  |  |  |
|  | 3 | **Low Voltage** |  | 2026-07-07 | 2027-07-04 |  |  |  |  |  |  |  |  |  |  |  |  |  |
| CON-LEG101-LR-8070 |  | Installation of Low Voltage Cables Duct Banks [Local – 08 ] | 10d | 2026-07-07 A | 2026-07-09 A | CON-LEG101-LR-7870, CON-LEG101-PR-1320 | 100% |  | 2026-08-24 | 2026-09-03 |  |  | Truck [48 h]; Bucket [48 h]; Compactor [48 h]; Labor [50 h]; Driver [50 h]; Eq. Operator [100 h]; Carpenter [50 h]; Steel Fixer [50 h]; Mason [50 h]; Electrician [50 h]; Duct bank for (3) cables [3.02]; Duct bank for (1) cables [19.6]; Duct bank for (2) cables [7.54] | 10,181 | 10,181 | A5480 | 1 | L08 |
| CON-LEG101-LR-7870 |  | Excavation works for Low Voltage Cables [Local – 08 ] | 10d | 2026-08-18 A | 2026-08-27 A | CON-LEG101-LR-4300, CON-LEG101-LR-11740, CON-LEG101-LR-2170, CON-LEG101-LR-10830, CON-LEG101-EN-1680, CON-LEG101-EN-3440 | 100% |  | 2026-09-16 | 2026-09-28 |  |  | Excavator [48 h]; Truck [48 h]; Labor [200 h]; Driver [50 h]; Eq. Operator [50 h] |  |  | A5200 | 1 | L08 |
| CON-LEG101-LR-7970 |  | Installation of Low Voltage Cables [Local – 08 ] | 7d | 2026-08-19 A | 2026-08-27 A | CON-LEG101-LR-8070, CON-LEG101-LR-7870, CON-LEG101-PR-1900 | 100% |  | 2027-02-07 | 2027-02-18 |  |  | Excavator [48 h]; Truck [48 h]; Bucket [48 h]; Compactor [48 h]; Labor [100 h]; Skilled Labor [50 h]; Driver [50 h]; Eq. Operator [150 h]; Electrician [100 h]; Stranded armored Cables, Copper, 4C,50mm² XLPE /SWA/PVC [1.21]; Stranded armored Cables, Copper, 4C,35mm² XLPE/SWA /PVC [156.78]; Stranded armored Cables, Copper, 4xC16mm² XLPE /SWA/PVC [1025.1]; Single Core Cable, Copper 1C,16mm² CU/PVC For Earth [156.78]; Single Core Cable, Copper 1C,10mm² CU/PVC For Earth [1025.1]; Single Core Cable, Copper 1C,25mm² CU/PVC For Earth [1.21] | 93,357.9 | 93,357.9 | A5310 | 1 | L08 |
| CON-LEG101-LR-8500 |  | Installation of Low Voltage Distribution Panel [Local – 08 ] | 7d | 2027-06-27 | 2027-07-04 | CON-LEG101-LR-7970, CON-LEG101-LR-8070, CON-LEG101-PR-2550 |  |  |  |  | 23d | 0d | Main 100A MCCB with outgoing [1.34]; Crane [48 h]; Labor [100 h]; Eq. Operator [50 h]; Carpenter [100 h]; Electrician [200 h] | 26,800 |  | A6140 |  | L08 |

| ID | WBS | Activity | Duration | Start | Finish | Predecessors | Complete | Remaining | Planned start | Planned finish | Total float | Free float | Resources | Cost | Actual cost | Mapping Sheet Activity ID | % A | JEDDAH 1 - Area Name |
| --- | --- | --- | --- | --- | --- | --- | --- | --- | --- | --- | --- | --- | --- | --- | --- | --- | --- | --- |
|  | 10 | **Telecommunications** |  | 2026-07-07 | 2026-10-15 |  |  |  |  |  |  |  |  |  |  |  |  |  |
| CON-LEG101-LR-9020 |  | Installation of Concrete encased duct banks for primary network [Local – 08 ] | 8d | 2026-07-07 A | 2026-07-09 A | CON-LEG101-PR-3180, CON-LEG101-LR-8920, CON-LEG101-PR-1430 | 100% |  | 2026-10-13 | 2026-10-21 |  |  | Truck [48 h]; Bucket [48 h]; Compactor [48 h]; Labor [50 h]; Driver [50 h]; Eq. Operator [100 h]; Carpenter [50 h]; Steel Fixer [50 h]; Mason [50 h]; Electrician [50 h]; 6-ways ducts, 50mm diameter, (HDPE TYPE) + 4 x 32 mm HDPE sub-ducts [131.33]; 6-ways ducts, 50mm diameter, (HDPE TYPE) . [51.32] | 33,246.75 | 33,246.75 | A7000 | 1 | L08 |
| CON-LEG101-LR-9320 |  | Installation of Concrete encased duct banks for for combined network of primary and secondary [Local – 08 ] | 5d | 2026-07-07 A | 2026-07-09 A | CON-LEG101-PR-3250, CON-LEG101-LR-9220, CON-LEG101-PR-1430, CON-LEG101-LR-8500 | 100% |  | 2027-03-04 | 2027-03-09 |  |  | Truck [48 h]; Bucket [48 h]; Compactor [48 h]; Labor [50 h]; Driver [50 h]; Eq. Operator [100 h]; Carpenter [50 h]; Steel Fixer [50 h]; Mason [50 h]; Electrician [50 h]; 6 x 32 mm HDPE sub-ducts [2.83] | 1,132 | 1,132 | A7460 | 1 | L08 |
| CON-LEG101-LR-8920 |  | Installation of Sand and soil encased duct banks for primary network [Local – 08 ] | 8d | 2026-09-22 A | 2026-10-07 A | CON-LEG101-LR-7870, CON-LEG101-EN-3280, CON-LEG101-EN-3440 | 100% |  | 2026-10-29 | 2026-11-07 |  |  | Truck [144 h]; Bucket [144 h]; Compactor [144 h]; Labor [150 h]; Driver [150 h]; Eq. Operator [300 h]; Carpenter [150 h]; Steel Fixer [150 h]; Mason [150 h]; Electrician [150 h]; 6-ways ducts, 50mm diameter, (HDPE TYPE) . [333.22]; 6-ways ducts, 50mm diameter, (HDPE TYPE) + 2 x 32 mm HDPE sub-ducts [155.63] | 73,107.9 | 73,107.9 | A6860 |  | L08 |
| CON-LEG101-LR-9120 |  | Installation of Sand encased duct banks for secondary network [Local – 08 ] | 5d | 2026-09-23 A | 2026-10-07 A | CON-LEG101-LR-9020, CON-LEG101-EN-3440 | 100% |  | 2026-12-29 | 2027-01-03 |  |  | Truck [48 h]; Bucket [48 h]; Compactor [48 h]; Labor [50 h]; Driver [50 h]; Eq. Operator [100 h]; Carpenter [50 h]; Steel Fixer [50 h]; Mason [50 h]; Electrician [50 h]; 2 x 32 mm HDPE sub-ducts [52.34]; 6-ways ducts, 50mm diameter, (HDPE TYPE) + 6 x 32 mm HDPE sub-ducts [51.73] | 15,580 | 15,580 | A7160 |  | L08 |
| CON-LEG101-LR-9220 |  | Installation of Sand and soil encased duct banks, for combined network of primary and secondary [Local – 08 ] | 4d | 2026-09-24 A | 2026-10-07 A | CON-LEG101-LR-9120, CON-LEG101-EN-3440 | 100% |  | 2027-01-04 | 2027-01-07 |  |  | Truck [144 h]; Bucket [144 h]; Compactor [144 h]; Labor [150 h]; Driver [150 h]; Eq. Operator [300 h]; Carpenter [150 h]; Steel Fixer [150 h]; Mason [150 h]; Electrician [150 h]; 4 x 32 mm HDPE sub-ducts [10.37]; 6-ways ducts, 50mm diameter, (HDPE TYPE) + 2 x 32 mm HDPE sub-ducts [3.68] | 3,730 | 3,730 | A7320 |  | L08 |
| CON-LEG101-LR-9420 |  | Installation of Reinforced concrete manhole [Local – 08 ] | 6d | 2026-09-26 A | 2026-10-15 A | CON-LEG101-LR-9320, CON-LEG101-PR-3260 | 100% |  | 2027-05-25 | 2027-05-31 |  |  | Truck [48 h]; Bucket [48 h]; Compactor [48 h]; Labor [50 h]; Driver [50 h]; Eq. Operator [100 h]; Carpenter [50 h]; Steel Fixer [50 h]; Mason [50 h]; Electrician [50 h]; Reinforced concrete manhole Type 1- 1200x1500x1200mm [0.67]; Reinforced concrete manhole Type 2- 1200x1500x1200mm [1.34] | 34,170 | 34,170 | A7610 |  | L08 |
|  | 11 | **CCTV feeding system and GSM** |  | 2026-07-05 | 2027-07-04 |  |  |  |  |  |  |  |  |  |  |  |  |  |
| CON-LEG101-LR-9930 |  | Installation of 25 Meters pole for CCTV Cameras [Local – 08 ] | 7d | 2026-07-05 A | 2026-07-11 A | CON-LEG101-LR-9820, CON-LEG101-PR-3870 | 100% |  | 2027-04-03 | 2027-04-10 |  |  | Truck [48 h]; Bucket [48 h]; Compactor [48 h]; Labor [50 h]; Driver [50 h]; Eq. Operator [100 h]; Carpenter [50 h]; Steel Fixer [50 h]; Mason [50 h]; Electrician [50 h]; "35 Meters mono pole with Double Platform for Access Points including : |  |  | A8670 | 1 | L08 |
| CON-LEG101-LR-10030 |  | Installation of Short Range wireless point to point wireless bridge [Local – 08 ] | 7d | 2026-07-25 A | 2026-09-24 A | CON-LEG101-LR-9930, CON-LEG101-PR-3910 | 100% |  | 2027-03-08 | 2027-03-15 |  |  | Truck [48 h]; Bucket [48 h]; Compactor [48 h]; Labor [50 h]; Driver [50 h]; Eq. Operator [100 h]; Carpenter [50 h]; Steel Fixer [50 h]; Mason [50 h]; Electrician [50 h]; Short Range wireless point to point wireless bridge |  |  | A8800 | 0.8 | L08 |
| CON-LEG101-LR-9770 |  | Installation of Outdoor PTZ IP66 [Local – 08 ] | 3d | 2026-07-25 A | 2026-09-24 A | CON-LEG101-LR-8920, CON-LEG101-PR-3650 | 100% |  | 2026-11-03 | 2026-11-05 |  |  | Truck [48 h]; Bucket [48 h]; Compactor [48 h]; Labor [50 h]; Driver [50 h]; Eq. Operator [100 h]; Carpenter [50 h]; Steel Fixer [50 h]; Mason [50 h]; Electrician [50 h]; "Outdoor PTZ with IR, HDTV 1080 and 31x optical, 12x digital, total 372x zoom, H264/265 with Motion JPEG. |  |  | A8280 | 0.8 | L08 |
| CON-LEG101-LR-9820 |  | Installation of LED Screen 43" (24/7 operation) with Ethernet decoders [Local – 08 ] | 7d | 2027-06-27 | 2027-07-04 | CON-LEG101-PR-3950, CON-LEG101-LR-9770, CON-LEG101-PR-3290 |  |  |  |  | 23d | 0d | Truck [48 h]; Bucket [48 h]; Compactor [48 h]; Labor [50 h]; Driver [50 h]; Eq. Operator [100 h]; Carpenter [50 h]; Steel Fixer [50 h]; Mason [50 h]; Electrician [50 h]; LED Screen 43" (24/7 operation) with Ethernet decoders |  |  | A8390 |  | L08 |
|  | 12 | **Earthing System** |  | 2027-07-27 | 2027-07-29 |  |  |  |  |  |  |  |  |  |  |  |  |  |
| CON-LEG101-LR-8320 |  | Installation of Earthing for Distribution panels,SL feeder pillars, KWH, Unit substations and RMU [Local – 08 ] | 2d | 2027-07-27 | 2027-07-29 | CON-LEG101-LR-8470, CON-LEG101-LR-7570, CON-LEG101-LR-9420, CON-LEG101-LR-10030, CON-LEG101-PR-1480, CON-LEG101-LR-9770, CON-LEG101-PR-1310 |  |  |  |  | 3.3d | 67.3d | Earthing for Distribution panels,SL feeder pillars, KWH, Unit substations and RMU [2.68]; Crane [48 h]; Labor [100 h]; Eq. Operator [50 h]; Electrician [100 h] | 10,720 |  | A5850 |  | L08 |
|  | 9 | **Road Lighting** |  | 2026-04-19 | 2027-07-29 |  |  |  |  |  |  |  |  |  |  |  |  |  |
| CON-LEG101-LR-8170 |  | Installation of Lighting poles [Local – 08 ] | 7d | 2026-04-19 A | 2026-10-25 A | CON-LEG101-PR-1950, CON-LEG101-LR-7870, CON-LEG101-LR-8160 SS, CON-LEG101-PR-1910 | 100% |  | 2027-02-16 | 2027-02-25 |  |  | Lighting poles with 1 arm, height of (8 ) meters, including the power distribution box, cables, and RCC foundation. [8.04]; Excavator [48 h]; Truck [48 h]; Crane [48 h]; Labor [150 h]; Driver [50 h]; Eq. Operator [100 h]; Carpenter [50 h]; Steel Fixer [50 h]; Mason [50 h]; Electrician [150 h] | 27,336 | 27,336 | A5620 | 0.9 | L08 |
| CON-LEG101-LR-7490 |  | Installation of Unit Substation Including concrete foundations and fencing [Local – 08 ] | 4d | 2026-07-18 A | 2027-07-22 | CON-LEG101-LR-8170, CON-LEG101-EN-3310, CON-LEG101-EN-3320, CON-LEG101-EN-3330, CON-LEG101-EN-3360, CON-LEG101-PR-1890 | 30% | 2.8d | 2027-05-03 | 2027-05-08 | 3.3d | 0d | Unit Substation 13.8/0.4 K V, 500kVA ,Including concrete foundations and fencing, According to the specifications and standards of SEC [0.67]; Excavator [48 h]; Truck [48 h]; Bucket [48 h]; Compactor [48 h]; Labor [100 h]; Skilled Labor [50 h]; Driver [50 h]; Eq. Operator [150 h]; Electrician [100 h] | 56,950 | 17,085 | A4630 | 0.3 | L08 |
| CON-LEG101-LR-8270 |  | Installation of Street Lighting Luminaire [Local – 08 ] | 4d | 2026-08-22 A | 2026-10-25 A | CON-LEG101-LR-8170, CON-LEG101-PR-1920 | 100% |  | 2027-05-24 | 2027-05-29 |  |  | Street Lighting( LED) Luminous efficacy ? 120Lum/w complete with control gear and lamp, (100) WATT. Max. [8.04]; Crane [48 h]; Labor [150 h]; Skilled Labor [100 h]; Eq. Operator [50 h]; Electrician [150 h] | 8,040 | 8,040 | A5760 | 0.9 | L08 |
| CON-LEG101-LR-8470 |  | Installation of Street Lighting feeder pillars / Lighting panels [Local – 08 ] | 4d | 2026-09-05 A | 2027-07-27 | CON-LEG101-LR-7570, CON-LEG101-LR-8170, CON-LEG101-PR-1940, CON-LEG101-PR-2550 | 90% | 0.4d | 2027-06-10 | 2027-06-14 | 3.3d | 0d | Street Lighting feeder pillars [1.34]; Crane [48 h]; Labor [100 h]; Eq. Operator [50 h]; Carpenter [100 h]; Electrician [200 h] | 46,900 | 42,210 | A6070 | 0.8 | L08 |
| CON-LEG101-LR-7570 |  | Installation of Ring Main Unit RMU [Local – 08 ] | 4d | 2027-07-22 | 2027-07-27 | CON-LEG101-LR-7490, CON-LEG101-PR-2510 |  |  |  |  | 3.3d | 0d | Ring Main Unit RMU, 13.8KV, According to the specifications and standards of SEC [0.67]; Excavator [48 h]; Truck [48 h]; Bucket [48 h]; Compactor [48 h]; Labor [100 h]; Skilled Labor [50 h]; Driver [50 h]; Eq. Operator [150 h]; Electrician [100 h] | 50,250 |  | A4740 |  | L08 |
| CON-LEG101-LR-8420 |  | Installation of Earthing for Streetlighting feeders for every end pole circuits. [Local – 08 ] | 2d | 2027-07-27 | 2027-07-29 | CON-LEG101-LR-8470, CON-LEG101-LR-7570, CON-LEG101-LR-7490, CON-LEG101-PR-1480, CON-LEG101-LR-8270, CON-LEG101-PR-1310 |  |  |  |  | 20.9d | 67.3d | Earthing for Streetlighting feeders for every end pole circuits. [6.03]; Crane [48 h]; Labor [100 h]; Eq. Operator [50 h]; Carpenter [100 h]; Electrician [200 h] | 12,060 |  | A5980 |  | L08 |
|  | 3 | **Bridge** |  | 2026-01-17 | 2027-09-04 |  |  |  |  |  |  |  |  |  |  |  |  |  |
|  | 1 | **Substructure** |  | 2026-01-17 | 2026-08-01 |  |  |  |  |  |  |  |  |  |  |  |  |  |
|  | 1 | **Earth Work** |  | 2026-01-17 | 2026-08-01 |  |  |  |  |  |  |  |  |  |  |  |  |  |
| CON-LEG101-BR-1000 |  | Excavation for Bridge [Bridge ] | 21d | 2026-01-17 A | 2026-02-15 A | CON-LEG101-EN-1150, CON-LEG101-SD-1000, CON-LEG101-SD-1010, CON-LEG101-SD-1020, CON-LEG101-SD-1030, CON-LEG101-EN-3440 | 100% |  | 2026-02-23 | 2026-03-18 |  |  | Excavation for Roadway, fences and bridge, cuttings including dump locations (all types of soil) [4926.51]; Loader [48 h]; Water Tanker [48 h]; Grader [48 h]; Truck [48 h]; Road Roller [48 h]; Labor [200 h]; Driver [400 h]; Eq. Operator [600 h] | 9,853.02 | 9,853.02 | A1270 | 1 | Bridge |
| CON-LEG101-BR-1010 |  | Parcrels Excavation for Bridge [Bridge ] | 21d | 2026-01-17 A | 2026-02-15 A | CON-LEG101-BR-1000, CON-LEG101-EN-3440 | 100% |  | 2026-04-13 | 2026-05-06 |  |  | Loader [48 h]; Water Tanker [48 h]; Grader [48 h]; Truck [48 h]; Road Roller [48 h]; Labor [100 h]; Driver [200 h]; Eq. Operator [300 h] |  |  | A1480 | 1 | Bridge |
| CON-LEG101-BR-1240 |  | Embankments to the parcels for Bridge [Bridge ] | 14d | 2026-01-24 A | 2026-02-17 A | CON-LEG101-BR-1140, CON-LEG101-EN-3440 | 100% |  | 2026-05-25 | 2026-06-14 |  |  | Excavator [48 h]; Bulldozer [48 h]; Water Tanker [48 h]; Grader [48 h]; Truck [48 h]; Bucket [48 h]; Compactor [48 h]; Labor [100 h]; Driver [100 h]; Eq. Operator [250 h] |  |  | A1900 | 1 | Bridge |
| CON-LEG101-BR-1140 |  | Embankments to the Bridge [Bridge ] | 15d | 2026-05-17 A | 2026-08-01 A | CON-LEG101-BR-1010, CON-LEG101-EN-3440 | 100% |  | 2026-05-17 | 2026-06-07 |  |  | Embankments to the roads , fences and bridge. [3431.41]; Excavator [48 h]; Bulldozer [48 h]; Water Tanker [48 h]; Grader [48 h]; Truck [48 h]; Bucket [48 h]; Compactor [48 h]; Labor [200 h]; Driver [200 h]; Eq. Operator [500 h] | 102,942.3 | 102,942.3 | A1690 | 1 | Bridge |

| ID | WBS | Activity | Duration | Start | Finish | Predecessors | Complete | Planned start | Planned finish | Total float | Free float | Resources | Cost | Actual cost | Mapping Sheet Activity ID | % A | JEDDAH 1 - Area Name |
| --- | --- | --- | --- | --- | --- | --- | --- | --- | --- | --- | --- | --- | --- | --- | --- | --- | --- |
|  | 2 | **Piling** |  | 2026-01-18 | 2026-03-14 |  |  |  |  |  |  |  |  |  |  |  |  |
| CON-LEG101-BR-1020 |  | Reinforced concrete Piles [Bridge ] | 21d | 2026-01-18 A | 2026-03-14 A | CON-LEG101-BR-1000, CON-LEG101-EN-3560, CON-LEG101-EN-1150, CON-LEG101-EN-1150 FF, CON-LEG101-EN-1160, CON-LEG101-BR-1240 | 100% | 2026-05-21 | 2026-06-18 |  |  | "Reinforced concrete Piles [96.48]; Labor [200 h]; Skilled Labor [100 h]; Carpenter [100 h]; Steel Fixer [100 h]; Mason [200 h]; Pipe Fitter [200 h] | 434,160 | 434,160 | A16570 | 1 | Bridge |
|  | 3 | **Pile Caps & Abutments** |  | 2026-02-15 | 2026-05-20 |  |  |  |  |  |  |  |  |  |  |  |  |
| CON-LEG101-BR-1030 |  | Reinforced concrete for pile caps and abutment [Bridge ] | 21d | 2026-02-15 A | 2026-03-28 A | CON-LEG101-BR-1020, CON-LEG101-EN-1170, CON-LEG101-EN-1160 | 100% | 2026-06-09 | 2026-07-04 |  |  | "Reinforced concrete of Bridge Sub-structure [90.45]; Truck [48 h]; Bucket [48 h]; Labor [500 h]; Driver [100 h]; Eq. Operator [100 h]; Carpenter [100 h]; Mason [100 h] | 135,675 | 135,675 | A16610 | 1 | Bridge |
| CON-LEG101-BR-1180 |  | Installation of Elastomeric Bearings [Bridge ] | 15d | 2026-03-01 A | 2026-05-20 A | CON-LEG101-BR-1030, CON-LEG101-PR-2240 | 100% | 2026-08-09 | 2026-08-25 |  |  | "BRIDGE BEARINGS [8.04]; Labor [100 h]; Mason [50 h] | 40,200 | 40,200 | A17050 | 1 | Bridge |
|  | 2 | **Superstructure** |  | 2026-02-10 | 2026-08-17 |  |  |  |  |  |  |  |  |  |  |  |  |
|  | 1 | **Girder** |  | 2026-02-10 | 2026-06-23 |  |  |  |  |  |  |  |  |  |  |  |  |
|  | 1 | **Casting** |  | 2026-02-10 | 2026-04-26 |  |  |  |  |  |  |  |  |  |  |  |  |
| CON-LEG101-BR-1100 |  | Steel Reinforced Work | 21d | 2026-02-10 A | 2026-04-23 A | CON-LEG101-PR-1410, CON-LEG101-BR-1020, CON-LEG101-EN-1150, CON-LEG101-EN-1160, CON-LEG101-EN-1170 | 100% | 2026-06-06 | 2026-06-30 |  |  | "Reinforced Steel Grade 60 [14.15]; Truck [48 h]; Bucket [48 h]; Labor [500 h]; Driver [100 h]; Eq. Operator [100 h]; Carpenter [100 h]; Mason [100 h] | 59,416.56 | 59,416.56 | A16850 | 1 | Bridge |
| CON-LEG101-BR-1110 |  | Formwork and Casting | 21d | 2026-03-16 A | 2026-04-26 A | CON-LEG101-BR-1100 | 100% | 2026-05-03 | 2026-06-01 |  |  | "Reinforced precast prestressed concrete [83.08]; Truck [48 h]; Bucket [48 h]; Labor [250 h]; Driver [50 h]; Eq. Operator [50 h]; Carpenter [50 h]; Mason [50 h] | 166,160 | 166,160 | A16860 | 1 | Bridge |
|  | 2 | **Installation** |  | 2026-04-30 | 2026-06-23 |  |  |  |  |  |  |  |  |  |  |  |  |
| CON-LEG101-BR-1120 |  | Prestressing Strands | 21d | 2026-04-30 A | 2026-05-18 A | CON-LEG101-PR-2400, CON-LEG101-BR-1110, CON-LEG101-BR-1030, CON-LEG101-PR-2140, CON-LEG101-BR-1180 | 100% | 2026-06-06 | 2026-06-30 |  |  | "PRESTRESSING STRANDS [13.4]; Truck [48 h]; Bucket [48 h]; Labor [250 h]; Driver [50 h]; Eq. Operator [50 h]; Carpenter [50 h]; Mason [50 h] | 187,600 | 187,600 | A16870 | 1 | Bridge |
| CON-LEG101-BR-1130 |  | Installation of Girder | 21d | 2026-06-21 A | 2026-06-23 A | CON-LEG101-BR-1180, CON-LEG101-BR-1120, CON-LEG101-PR-2240, CON-LEG101-EN-1200 | 100% | 2026-06-22 | 2026-07-15 |  |  | "Reinforced precast prestressed concrete [83.08]; Truck [438.86 h]; Bucket [58.86 h]; Labor [250 h]; Driver [50 h]; Eq. Operator [50 h]; Carpenter [50 h]; Mason [50 h] | 166,160 | 166,160 | A16880 | 1 | Bridge |
|  | 2 | **Slab Casting** |  | 2026-07-01 | 2026-08-17 |  |  |  |  |  |  |  |  |  |  |  |  |
|  | 1 | **Top Slabs** |  | 2026-07-01 | 2026-07-12 |  |  |  |  |  |  |  |  |  |  |  |  |
| CON-LEG101-BR-1050 |  | Formwork for Top Slab | 21d | 2026-07-01 A | 2026-07-09 A | CON-LEG101-BR-1130, CON-LEG101-PR-2410 | 100% | 2026-09-07 | 2026-10-01 |  |  | "Reinforced concrete Bridge Superstructure [35.68]; Truck [100 h]; Bucket [100 h]; Labor [250 h]; Driver [100 h]; Eq. Operator [50 h]; Carpenter [150 h]; Mason [50 h] | 53,520 | 53,520 | A16690 | 1 | Bridge |
| CON-LEG101-BR-1040 |  | Steel Reinforced Work for Top Slab | 21d | 2026-07-02 A | 2026-07-08 A | CON-LEG101-BR-1050, CON-LEG101-BR-1130, CON-LEG101-EN-1190, CON-LEG101-EN-1210 | 100% | 2026-10-03 | 2026-10-26 |  |  | "Reinforced Steel Grade 60 [26.8]; Truck [200 h]; Bucket [145.71 h]; Labor [250 h]; Driver [200 h]; Eq. Operator [50 h]; Carpenter [300 h]; Steel Fixer; Mason [50 h] | 112,560 | 112,560 | A16680 | 1 | Bridge |
| CON-LEG101-BR-1060 |  | Casting Concrete & Treatment for Top Slab | 10d | 2026-07-12 A | 2026-07-12 A | CON-LEG101-BR-1040, CON-LEG101-BR-1050 | 100% | 2026-11-10 | 2026-11-21 |  |  | "Reinforced concrete Bridge Superstructure [35.68]; Truck [119.2 h]; Bucket [48 h]; Labor [250 h]; Driver [100 h]; Eq. Operator [50 h]; Carpenter [50 h]; Mason [50 h] | 53,520 | 53,520 | A16700 | 1 | Bridge |
|  | 2 | **Apron Slabs** |  | 2026-08-05 | 2026-08-17 |  |  |  |  |  |  |  |  |  |  |  |  |
| CON-LEG101-BR-1250 |  | Lean concrete For Apron Slab [Bridge ] | 4d | 2026-08-05 A | 2026-08-05 A | CON-LEG101-BR-1140, CON-LEG101-BR-1240, CON-LEG101-BR-1060 | 100% | 2026-08-05 | 2026-08-09 |  |  | "Lean concrete [5.36]; Truck [48 h]; Bucket [48 h]; Labor [375 h]; Driver [150 h]; Eq. Operator [75 h]; Carpenter [150 h]; Mason [75 h] | 5,360 | 5,360 | A1902 | 1 | Bridge |
| CON-LEG101-BR-1070 |  | Steel Reinforced Work for Apron Slab | 15d | 2026-08-08 A | 2026-08-17 A | CON-LEG101-BR-1250, CON-LEG101-BR-1060, CON-LEG101-EN-1210, CON-LEG101-EN-1220 | 100% | 2026-08-10 | 2026-08-26 |  |  | "Reinforced Steel Grade 60 [26.8]; Truck [48 h]; Bucket [48 h]; Labor [250 h]; Driver [200 h]; Eq. Operator [50 h]; Carpenter [50 h]; Steel Fixer; Mason [50 h] | 112,560 | 112,560 | A16720 | 1 | Bridge |
| CON-LEG101-BR-1080 |  | Formwork Work for Apron Slab | 15d | 2026-08-09 A | 2026-08-17 A | CON-LEG101-BR-1250, CON-LEG101-BR-1070 | 100% | 2026-08-27 | 2026-09-13 |  |  | "Reinforced concrete Bridge Superstructure [35.68]; Truck [48 h]; Bucket [48 h]; Labor [250 h]; Driver [100 h]; Eq. Operator [50 h]; Carpenter [50 h]; Mason [50 h] | 53,520 | 53,520 | A16730 | 1 | Bridge |
| CON-LEG101-BR-1090 |  | Casting Concrete Work & Treatment for Apron Slab | 6d | 2026-08-11 A | 2026-08-17 A | CON-LEG101-BR-1080 | 100% | 2026-09-14 | 2026-09-20 |  |  | "Reinforced concrete Bridge Superstructure [35.68]; Truck [48 h]; Bucket [48 h]; Labor [250 h]; Driver [132.14 h]; Eq. Operator [50 h]; Carpenter [50 h]; Mason [50 h] | 53,520 | 53,520 | A16740 | 1 | Bridge |
|  | 3 | **Bridge Finishing** |  | 2026-07-13 | 2027-09-04 |  |  |  |  |  |  |  |  |  |  |  |  |
| CON-LEG101-BR-1150 |  | Installation of New Jersey [Bridge ] | 20d | 2026-07-13 A | 2026-08-06 A | CON-LEG101-PR-2420, CON-LEG101-BR-1090, CON-LEG101-PR-2170, CON-LEG101-EN-1230, CON-LEG101-BR-1230 | 100% | 2027-01-12 | 2027-02-03 |  |  | "New Jersey [64.32]; Labor [100 h]; Steel Fixer [50 h]; Mason [50 h]; Pipe Fitter [50 h] | 32,160 | 32,160 | A16930 | 1 | Bridge |
| CON-LEG101-BR-1270 |  | Installation of Lighting poles [Bridge ] | 18d | 2026-09-23 A | 2026-09-26 A | CON-LEG101-BR-1060, CON-LEG101-BR-1150, CON-LEG101-LR-8170 | 100% | 2027-06-16 | 2027-07-07 |  |  | Lighting poles with 1 arm, height of (8 ) meters, including the power distribution box, cables, and RCC foundation. [8.04]; Street Lighting( LED) Luminous efficacy ? 120Lum/w complete with control gear and lamp, (100) WATT. Max. [8.04]; Labor | 35,376 | 35,376 |  |  | Bridge |
| CON-LEG101-BR-1160 |  | Membrane waterproofing for concert in touch with soil and membrane waterproofing for bridge slab [Bridge ] | 10d | 2026-11-04 | 2026-11-15 | CON-LEG101-BR-1150 |  |  |  | 128.5d | 0d | Membrane waterproofing for concert in touch with soil and membrane waterproofing for bridge slab (under asphalt ) as per details drawing ST-DWG-6103, including protection board around foundation sides. The cost includes preparation work and cleaning the s [335]; Mason [200 h] | 40,200 |  | A16970 |  | Bridge |
| CON-LEG101-BR-1170 |  | Placing of Protective Coating for Concrete Surfaces [Bridge ] | 13d | 2026-11-16 | 2026-11-30 | CON-LEG101-BR-1160 |  |  |  | 128.5d | 0d | "Protective Coating for Concrete Surfaces [872.43]; Labor [50 h]; Mason [100 h] | 61,070.1 |  | A17010 |  | Bridge |
| CON-LEG101-BR-1260 |  | Asphalt Wearing Cource | 3d | 2026-12-01 | 2026-12-03 | CON-LEG101-BR-1170 |  |  |  | 128.5d | 0d | Bituminous concrete wearing course, (Grading I - Class A), including tack coat (RC2) according to drawings. [83.29]; Labor [150 h] | 49,974 |  |  |  | Bridge |
| CON-LEG101-BR-1190 |  | Installation of expansion joints for bridges [Bridge ] | 14d | 2026-12-05 | 2026-12-20 | CON-LEG101-BR-1260, CON-LEG101-BR-1180, CON-LEG101-PR-2250 |  |  |  | 128.5d | 171.5d | "EXPANSION JOINTS [13.84]; Labor [100 h]; Steel Fixer [100 h] | 76,120 |  | A17090 |  | Bridge |
| CON-LEG101-BR-1200 |  | Installation of Guard Rail [Bridge ] | 20d | 2027-07-19 | 2027-08-11 | CON-LEG101-BR-1260, CON-LEG101-BR-1270, CON-LEG101-BR-1190, CON-LEG101-PR-2290 |  |  |  | -43d | 0d | "GUARD RAIL [53.6]; Labor [215 h]; Steel Fixer [100 h] | 96,480 |  | A17140 |  | Bridge |
| CON-LEG101-BR-1210 |  | Installation of GRP Panel [Bridge ] | 10d | 2027-08-11 | 2027-08-23 | CON-LEG101-BR-1260, CON-LEG101-BR-1200, CON-LEG101-PR-2330 |  |  |  | -43d | 0d | "GRP PANEL [157.45]; Labor [400 h]; Steel Fixer [50 h] | 251,920 |  | A17180 |  | Bridge |
| CON-LEG101-BR-1220 |  | Installation of Logo MODON [Bridge ] | 10d | 2027-08-23 | 2027-09-04 | CON-LEG101-PR-2430, CON-LEG101-BR-1260, CON-LEG101-BR-1210, CON-LEG101-PR-2360 |  |  |  | -43d | 0d | "LOGO MODON [1.34]; Labor [300 h]; Steel Fixer [50 h] | 107,200 |  | A17220 |  | Bridge |

| ID | WBS | Activity | Duration | Start | Finish | Predecessors | Complete | Remaining | Planned start | Planned finish | Total float | Free float | Resources | Cost | Actual cost | Mapping Sheet Activity ID | % A | JEDDAH 1 - Area Name |
| --- | --- | --- | --- | --- | --- | --- | --- | --- | --- | --- | --- | --- | --- | --- | --- | --- | --- | --- |
|  | 4 | **Drainage** |  | 2026-07-09 | 2026-07-11 |  |  |  |  |  |  |  |  |  |  |  |  |  |
|  | 1 | **Gully Installation** |  | 2026-07-09 | 2026-07-11 |  |  |  |  |  |  |  |  |  |  |  |  |  |
| CON-LEG101-BR-1230 |  | Installation of Bridge Gully (Scupper) drainage units [Bridge ] | 10d | 2026-07-09 A | 2026-07-11 A | CON-LEG101-PR-2410, CON-LEG101-BR-1060, CON-LEG101-PR-2390, CON-LEG101-BR-1080 | 100% |  | 2026-12-31 | 2027-01-11 |  |  | "Bridge Gully (Scupper) drainage [2.01]; Labor [100 h]; Mason [50 h]; Plumber [50 h] | 16,080 | 16,080 | A17260 | 1 | Bridge |
|  | 4 | **Outside Boundary Area (Tie-in Lines)** |  | 2026-01-05 | 2027-07-04 |  |  |  |  |  |  |  |  |  |  |  |  |  |
|  | 1 | **Permits & Prepation works for Construction** |  | 2026-01-05 | 2026-04-16 |  |  |  |  |  |  |  |  |  |  |  |  |  |
| CON-LEG101-OBA-1230 |  | Permits for Starting Works | 20d | 2026-01-05 A | 2026-02-12 A | CON-LEG101-MS-1070, CON-LEG101-EN-1770, CON-LEG101-EN-1720, CON-LEG101-EN-1740, CON-LEG101-EN-1690, CON-LEG101-EN-1710 | 100% |  | 2026-01-28 | 2026-02-19 |  |  |  |  |  |  | 1 | Out Sid |
| CON-LEG101-OBA-1240 |  | As Built for Existing Utilites | 21d | 2026-01-07 A | 2026-02-14 A | CON-LEG101-OBA-1230 | 100% |  | 2026-02-21 | 2026-03-17 |  |  |  |  |  |  | 1 | Out Sid |
| CON-LEG101-OBA-1270 |  | Detour & Safety works | 10d | 2026-02-12 A | 2026-04-16 A | CON-LEG101-OBA-1260 | 100% |  | 2026-04-29 | 2026-05-11 |  |  |  |  |  |  | 1 | Out Sid |
| CON-LEG101-OBA-1250 |  | Submission of Engineering Works | 21d | 2026-02-15 A | 2026-04-09 A | CON-LEG101-OBA-1240 | 100% |  | 2026-03-10 | 2026-04-08 |  |  |  |  |  |  | 1 | Out Sid |
| CON-LEG101-OBA-1260 |  | Approval of Engineering Works | 12d | 2026-02-19 A | 2026-04-15 A | CON-LEG101-OBA-1250 | 100% |  | 2026-04-15 | 2026-04-29 |  |  |  |  |  |  | 1 | Out Sid |
|  | 4 | **Sanitary Sewerage** |  | 2026-02-14 | 2026-11-05 |  |  |  |  |  |  |  |  |  |  |  |  |  |
|  | 2 | **Pipe Work** |  | 2026-02-14 | 2026-05-11 |  |  |  |  |  |  |  |  |  |  |  |  |  |
| CON-LEG101-OBA-1080 |  | Excavation for Sanitary Sewerage Network [Outside Boundary Area ] | 21d | 2026-02-14 A | 2026-05-03 A | CON-LEG101-OBA-1270, CON-LEG101-SD-1000, CON-LEG101-SD-1010, CON-LEG101-SD-1020, CON-LEG101-SD-1030, CON-LEG101-EN-1750, CON-LEG101-EN-1760, CON-LEG101-EN-1770, CON-LEG101-EN-3440 | 100% |  | 2026-05-02 | 2026-05-26 |  |  | Sanitary Sewerage 450mm Depth: 3.51m - 4.50m [10.72]; Sanitary Sewerage 450mm Depth exceeds 4.50m [2.68]; Excavator [48 h]; Water Tanker [48 h]; Truck [96 h]; Crane [48 h]; Labor [400 h]; Driver [300 h]; Eq. Operator [200 h]; Sanitary Sewerage 450mm Depth: 0.00 m - 1.50 m. [2.68]; Sanitary Sewerage 450mm Depth: 1.51m - 2.50m [64.32]; Sanitary Sewerage 450mm Depth: 2.51m - 3.50m [58.69] | 121,817.5 | 121,817.5 | A13290 | 1 | Out Sid |
| CON-LEG101-OBA-1090 |  | Granular bedding for Sanitary Sewerage Network [Outside Boundary Area ] | 18d | 2026-02-15 A | 2026-05-04 A | CON-LEG101-PR-2560, CON-LEG101-OBA-1080 | 100% |  | 2026-05-26 | 2026-06-21 |  |  | Sanitary Sewerage 450mm Depth: 3.51m - 4.50m [2.68]; Sanitary Sewerage 450mm Depth exceeds 4.50m [0.67]; Loader [48 h]; Truck [48 h]; Driver [50 h]; Eq. Operator [50 h]; Sanitary Sewerage 450mm Depth: 0.00 m - 1.50 m. [0.67]; Sanitary Sewerage 450mm Depth: 1.51m - 2.50m [16.08]; Sanitary Sewerage 450mm Depth: 2.51m - 3.50m [14.67] | 30,452 | 30,452 | A13390 | 1 | Out Sid |
| CON-LEG101-OBA-1100 |  | Installation of Pipe for Sanitary Sewerage Network [Outside Boundary Area ] | 21d | 2026-02-16 A | 2026-05-06 A | CON-LEG101-PR-2560, CON-LEG101-OBA-1090, CON-LEG101-PR-1720 | 100% |  | 2026-06-21 | 2026-07-15 |  |  | Sanitary Sewerage 450mm Depth: 3.51m - 4.50m [24.12]; Sanitary Sewerage 450mm Depth exceeds 4.50m [6.03]; Excavator [48 h]; Crane [48 h]; Labor [150 h]; Skilled Labor [100 h]; Eq. Operator [100 h]; Plumber [50 h]; Pipe Fitter [50 h]; Sanitary Sewerage 450mm Depth: 0.00 m - 1.50 m. [6.03]; Sanitary Sewerage 450mm Depth: 1.51m - 2.50m [144.72]; Sanitary Sewerage 450mm Depth: 2.51m - 3.50m [132.06] | 274,096.5 | 274,096.5 | A13490 | 1 | Out Sid |
| CON-LEG101-OBA-1120 |  | Granular Surround for Sanitary Sewerage Network [Outside Boundary Area ] | 18d | 2026-02-16 A | 2026-05-09 A | CON-LEG101-OBA-1110, CON-LEG101-EN-3450 | 100% |  | 2026-08-09 | 2026-08-30 |  |  | Sanitary Sewerage 450mm Depth: 3.51m - 4.50m [2.68]; Sanitary Sewerage 450mm Depth exceeds 4.50m [0.67]; Loader [48 h]; Truck [48 h]; Driver [50 h]; Eq. Operator [50 h]; Sanitary Sewerage 450mm Depth: 0.00 m - 1.50 m. [0.67]; Sanitary Sewerage 450mm Depth: 1.51m - 2.50m [16.08]; Sanitary Sewerage 450mm Depth: 2.51m - 3.50m [14.67] | 30,452 | 30,452 | A13820 | 1 | Out Sid |
| CON-LEG101-OBA-1110 |  | Testing for Sanitary Sewerage Network [Outside Boundary Area ] | 21d | 2026-03-10 A | 2026-05-07 A | CON-LEG101-OBA-1100 | 100% |  | 2026-05-26 | 2026-06-24 |  |  | Sanitary Sewerage 450mm Depth: 3.51m - 4.50m [5.36]; Sanitary Sewerage 450mm Depth exceeds 4.50m [1.34]; Labor [200 h]; Skilled Labor [100 h]; Pipe Fitter [100 h]; Sanitary Sewerage 450mm Depth: 0.00 m - 1.50 m. [1.34]; Sanitary Sewerage 450mm Depth: 1.51m - 2.50m [32.16]; Sanitary Sewerage 450mm Depth: 2.51m - 3.50m [29.35] | 60,913.5 | 60,913.5 | A13590 | 1 | Out Sid |
| CON-LEG101-OBA-1130 |  | Installation of Micron Marker Magnetic Tape [Outside Boundary Area ] | 7d | 2026-03-11 A | 2026-05-10 A | CON-LEG101-OBA-1120 | 100% |  | 2026-07-02 | 2026-07-11 |  |  | Sanitary Sewerage 450mm Depth: 3.51m - 4.50m [2.68]; Sanitary Sewerage 450mm Depth exceeds 4.50m [0.67]; Labor [100 h]; Sanitary Sewerage 450mm Depth: 0.00 m - 1.50 m. [0.67]; Sanitary Sewerage 450mm Depth: 1.51m - 2.50m [16.08]; Sanitary Sewerage 450mm Depth: 2.51m - 3.50m [14.67] | 30,452 | 30,452 | A13920 | 1 | Out Sid |
| CON-LEG101-OBA-1140 |  | Backfilling to Subgrade Elevation [Outside Boundary Area ] | 18d | 2026-03-12 A | 2026-05-11 A | CON-LEG101-OBA-1130, CON-LEG101-EN-3440 | 100% |  | 2026-07-11 | 2026-08-01 |  |  | Sanitary Sewerage 450mm Depth: 3.51m - 4.50m [5.36]; Sanitary Sewerage 450mm Depth exceeds 4.50m [1.34]; Excavator [28 h]; Water Tanker [28 h]; Road Roller [48 h]; Bucket [48 h]; Compactor [48 h]; Labor [100 h]; Driver [50 h]; Eq. Operator [200 h]; Sanitary Sewerage 450mm Depth: 0.00 m - 1.50 m. [1.34]; Sanitary Sewerage 450mm Depth: 1.51m - 2.50m [32.16]; Sanitary Sewerage 450mm Depth: 2.51m - 3.50m [29.35] | 60,913.5 | 60,913.5 | A14020 | 1 | Out Sid |
|  | 1 | **Manhole** |  | 2026-02-14 | 2026-11-05 |  |  |  |  |  |  |  |  |  |  |  |  |  |
| CON-LEG101-OBA-1150 |  | Installation of Fiberglass Manholes [Outside Boundary Area ] | 21d | 2026-02-14 A | 2026-11-05 | CON-LEG101-PR-2570, CON-LEG101-OBA-1090, CON-LEG101-PR-1750, CON-LEG101-OBA-1140 | 95% | 1.05d | 2026-09-29 | 2026-10-24 | 208.13d | 196.95d | Sanitary Sewerage MH depth 2.51 - 3.50 m [3.35]; Sanitary Sewerage MH depth 2.51 - 3.50 m with back drop [0.67]; Sanitary Sewerage MH depth 3.51 - 4.50 m [2.01]; Sanitary Sewerage MH depth exceeds 3.50 m with back drop [0.67]; Sanitary Sewerage MH depth exceeds 4.50 m [0.67]; Excavator [21 h]; Bucket [48 h]; Compactor [48 h]; Labor [100 h]; Eq. Operator [150 h]; Pipe Fitter [100 h] | 170,850 | 162,307.5 | A14230 | 0.9 | Out Sid |
|  | 3 | **TSE Network** |  | 2026-05-05 | 2027-07-04 |  |  |  |  |  |  |  |  |  |  |  |  |  |
|  | 2 | **Pipe Work** |  | 2026-05-05 | 2026-07-02 |  |  |  |  |  |  |  |  |  |  |  |  |  |
| CON-LEG101-OBA-1000 |  | Excavation for TSE Network [Outside Boundary Area ] | 10d | 2026-05-05 A | 2026-06-16 A | CON-LEG101-OBA-1270, CON-LEG101-LR-2070, CON-LEG101-EN-1720, CON-LEG101-EN-1730, CON-LEG101-EN-1740, CON-LEG101-EN-1810, CON-LEG101-OBA-1150 | 100% |  | 2027-01-09 | 2027-01-19 |  |  | Excavator [48 h]; Water Tanker [48 h]; Truck [400 h]; Crane [48 h]; Labor [300 h]; Driver [300 h]; Eq. Operator [100 h]; Piping TSE Network - 315mm Diameter Depth: 0.00 m - 1.50 m. [44.29]; Piping TSE Network - 315mm Diameter Depth: 1.51m - 2.50m [27.2]; Piping TSE Network - 315mm Diameter Depth: 2.51m - 3.50m [1.01]; Piping TSE Network - 315mm Diameter Depth exceeds 3.50m [1.34] | 42,475 | 42,475 | A11040 | 1 | Out Sid |
| CON-LEG101-OBA-1010 |  | Granular bedding for TSE Network [Outside Boundary Area ] | 8d | 2026-05-07 A | 2026-06-17 A | CON-LEG101-OBA-1000 | 100% |  | 2027-01-20 | 2027-01-28 |  |  | Loader [48 h]; Truck [300 h]; Driver [200 h]; Eq. Operator [50 h]; Piping TSE Network - 315mm Diameter Depth: 0.00 m - 1.50 m. [22.14]; Piping TSE Network - 315mm Diameter Depth: 1.51m - 2.50m [13.6]; Piping TSE Network - 315mm Diameter Depth: 2.51m - 3.50m [0.5]; Piping TSE Network - 315mm Diameter Depth exceeds 3.50m [0.67] | 21,225 | 21,225 | A11160 | 1 | Out Sid |
| CON-LEG101-OBA-1020 |  | Installation of Pipe for TSE Network [Outside Boundary Area ] | 11d | 2026-05-09 A | 2026-06-18 A | CON-LEG101-PR-2590, CON-LEG101-OBA-1010, CON-LEG101-PR-1690 | 100% |  | 2027-01-30 | 2027-02-15 |  |  | Excavator [48 h]; Crane [48 h]; Labor [150 h]; Skilled Labor [100 h]; Eq. Operator [100 h]; Plumber [50 h]; Pipe Fitter [50 h]; Piping TSE Network - 315mm Diameter Depth: 0.00 m - 1.50 m. [22.14]; Piping TSE Network - 315mm Diameter Depth: 1.51m - 2.50m [13.6]; Piping TSE Network - 315mm Diameter Depth: 2.51m - 3.50m [0.5]; Piping TSE Network - 315mm Diameter Depth exceeds 3.50m [0.67] | 21,225 | 21,225 | A11280 | 1 | Out Sid |
| CON-LEG101-OBA-1040 |  | Granular Surround for TSE Network [Outside Boundary Area ] | 8d | 2026-05-20 A | 2026-06-20 A | CON-LEG101-OBA-1030, CON-LEG101-EN-3450 | 100% |  | 2027-03-14 | 2027-03-23 |  |  | Loader [48 h]; Truck [230 h]; Driver [81.25 h]; Eq. Operator [50 h]; Piping TSE Network - 315mm Diameter Depth: 0.00 m - 1.50 m. [88.58]; Piping TSE Network - 315mm Diameter Depth: 1.51m - 2.50m [54.4]; Piping TSE Network - 315mm Diameter Depth: 2.51m - 3.50m [2.01]; Piping TSE Network - 315mm Diameter Depth exceeds 3.50m [2.68] | 84,930 | 84,930 | A11650 | 1 | Out Sid |
| CON-LEG101-OBA-1050 |  | Installation of Micron Marker Magnetic Tape [Outside Boundary Area ] | 3d | 2026-05-21 A | 2026-06-21 A | CON-LEG101-OBA-1040 | 100% |  | 2027-03-23 | 2027-03-27 |  |  | Labor [100 h]; Piping TSE Network - 315mm Diameter Depth: 0.00 m - 1.50 m. [22.14]; Piping TSE Network - 315mm Diameter Depth: 1.51m - 2.50m [13.6]; Piping TSE Network - 315mm Diameter Depth: 2.51m - 3.50m [0.5]; Piping TSE Network - 315mm Diameter Depth exceeds 3.50m [0.67] | 21,225 | 21,225 | A11770 | 1 | Out Sid |
| CON-LEG101-OBA-1060 |  | Backfilling to Subgrade Elevation [Outside Boundary Area ] | 15d | 2026-05-24 A | 2026-06-22 A | CON-LEG101-OBA-1050, CON-LEG101-EN-3440 | 100% |  | 2027-03-27 | 2027-04-13 |  |  | Excavator [48 h]; Water Tanker [48 h]; Road Roller [48 h]; Bucket [48 h]; Compactor [48 h]; Labor [100 h]; Driver [50 h]; Eq. Operator [200 h]; Piping TSE Network - 315mm Diameter Depth: 0.00 m - 1.50 m. [199.29]; Piping TSE Network - 315mm Diameter Depth: 1.51m - 2.50m [122.42]; Piping TSE Network - 315mm Diameter Depth: 2.51m - 3.50m [4.52]; Piping TSE Network - 315mm Diameter Depth exceeds 3.50m [6.03] | 191,091 | 191,091 | A11890 | 1 | Out Sid |
| CON-LEG101-OBA-1030 |  | Testing for TSE Network [Outside Boundary Area ] | 8d | 2026-07-01 A | 2026-07-02 A | CON-LEG101-OBA-1020 | 100% |  | 2027-02-16 | 2027-02-25 |  |  | Labor [300 h]; Skilled Labor [100 h]; Pipe Fitter [100 h]; Piping TSE Network - 315mm Diameter Depth: 0.00 m - 1.50 m. [44.29]; Piping TSE Network - 315mm Diameter Depth: 1.51m - 2.50m [27.2]; Piping TSE Network - 315mm Diameter Depth: 2.51m - 3.50m [1.01]; Piping TSE Network - 315mm Diameter Depth exceeds 3.50m [1.34] | 42,475 | 42,475 | A11400 | 1 | Out Sid |

| ID | WBS | Activity | Duration | Start | Finish | Predecessors | Complete | Remaining | Planned start | Planned finish | Total float | Free float | Resources | Cost | Actual cost | Mapping Sheet Activity ID | % A | JEDDAH 1 - Area Name |
| --- | --- | --- | --- | --- | --- | --- | --- | --- | --- | --- | --- | --- | --- | --- | --- | --- | --- | --- |
|  | 1 | **Valves/Chamber** |  | 2026-06-13 | 2027-07-04 |  |  |  |  |  |  |  |  |  |  |  |  |  |
| CON-LEG101-OBA-1070 |  | Installation of Butterfly valves (In Chamber) [Outside Boundary Area ] | 6d | 2026-06-13 A | 2027-07-04 | CON-LEG101-OBA-1500, CON-LEG101-OBA-1020, CON-LEG101-PR-1970 | 98% | 0.12d | 2027-03-14 | 2027-03-21 | 11.18d | 0d | Piping TSE Network - Butterfly valves, on pipe with diameter 315 mm [2.68]; Excavator [48 h]; Labor [100 h]; Skilled Labor [50 h]; Eq. Operator [50 h]; Plumber; Pipe Fitter [50 h] | 93,800 | 91,924 | A12160 | 0.98 | Out Sid |
| CON-LEG101-OBA-1500 |  | Installation of Valve Chamber [Outside Boundary Area ] | 10d | 2026-06-13 A | 2027-07-04 | CON-LEG101-OBA-1020, CON-LEG101-OBA-1060 SS | 98% | 0.2d | 2027-03-02 | 2027-03-14 | 11.18d | 0d | Plumber; Piping TSE Network - Wash out valve, on pipes with diameter 110-400 mm [1.34]; Piping TSE Network - On 315-400 mm diameter pipeline [2.68]; Piping TSE Network - Wash out valve chamber; on 110-400 mm diameter pipeline | 136,680 | 133,946.4 |  | 0.98 | Out Sid |
|  | 5 | **Public Water Utility Distribution** |  | 2026-04-01 | 2026-11-07 |  |  |  |  |  |  |  |  |  |  |  |  |  |
|  | 3 | **Public Water Utility Distribution (0 - 900) m** |  | 2026-05-06 | 2026-11-05 |  |  |  |  |  |  |  |  |  |  |  |  |  |
|  | 2 | **Pipe Work** |  | 2026-05-06 | 2026-07-23 |  |  |  |  |  |  |  |  |  |  |  |  |  |
| CON-LEG101-OBA-1160 |  | Excavation for Public Water Utility Distribution Piping [Outside Boundary Area ] 0 - 900 m | 21d | 2026-05-06 A | 2026-06-18 A | CON-LEG101-OBA-1270, CON-LEG101-EN-1690, CON-LEG101-EN-1700, CON-LEG101-EN-1710, CON-LEG101-EN-3440 | 100% |  | 2026-05-23 | 2026-06-21 |  |  | Excavator [96 h]; Water Tanker [96 h]; Truck [192 h]; Crane [96 h]; Labor [800 h]; Driver [600 h]; Eq. Operator [400 h]; Public Water - 400mm Diameter Depth: 0.00m -1.50m [115.28]; Public Water - 400mm Diameter Depth: 1.51m - 2.50m [4.06]; Public Water - 400mm Diameter Depth exceeds 2.50m [0.89] | 71,048.67 | 71,048.67 | A9120 | 1 | Out Sid |
| CON-LEG101-OBA-1170 |  | Granular bedding for Public Water Utility Distribution Piping [Outside Boundary Area ] 0 - 900 m | 13d | 2026-05-10 A | 2026-06-27 A | CON-LEG101-OBA-1160 | 100% |  | 2026-06-04 | 2026-06-20 |  |  | Loader [96 h]; Truck [96 h]; Driver [100 h]; Eq. Operator [100 h]; Public Water - 400mm Diameter Depth: 0.00m -1.50m [28.83]; Public Water - 400mm Diameter Depth: 1.51m - 2.50m [1.02]; Public Water - 400mm Diameter Depth exceeds 2.50m [0.22] | 17,768.07 | 17,768.07 | A9240 | 1 | Out Sid |
| CON-LEG101-OBA-1180 |  | Installation of Pipe for Public Water Utility Distribution Piping [Outside Boundary Area ] 0 - 900 m | 19d | 2026-05-12 A | 2026-06-28 A | CON-LEG101-PR-4010, CON-LEG101-OBA-1170, CON-LEG101-PR-1660 | 100% |  | 2026-06-20 | 2026-07-12 |  |  | Excavator [96 h]; Crane [96 h]; Labor [300 h]; Skilled Labor [200 h]; Eq. Operator [200 h]; Plumber [100 h]; Pipe Fitter [100 h]; Public Water - 400mm Diameter Depth: 0.00m -1.50m [259.39]; Public Water - 400mm Diameter Depth: 1.51m - 2.50m [9.15]; Public Water - 400mm Diameter Depth exceeds 2.50m [2.01] | 159,863.87 | 159,863.87 | A9360 | 1 | Out Sid |
| CON-LEG101-OBA-1200 |  | Granular Surround for Public Water Utility Distribution Piping [Outside Boundary Area ] 0 - 900 m | 13d | 2026-07-04 A | 2026-07-05 A | CON-LEG101-OBA-1190, CON-LEG101-EN-3450 | 100% |  | 2026-07-23 | 2026-08-06 |  |  | Loader [96 h]; Truck [96 h]; Driver [100 h]; Eq. Operator [100 h]; Public Water - 400mm Diameter Depth: 0.00m -1.50m [28.82]; Public Water - 400mm Diameter Depth: 1.51m - 2.50m [1.02]; Public Water - 400mm Diameter Depth exceeds 2.50m [0.22] | 17,762.27 | 17,762.27 | A9750 | 1 | Out Sid |
| CON-LEG101-OBA-1210 |  | Installation of Micron Marker Magnetic Tape [Outside Boundary Area ] 0 - 900 m | 3d | 2026-07-06 A | 2026-07-07 A | CON-LEG101-OBA-1200 | 100% |  | 2026-08-08 | 2026-08-10 |  |  | Labor [100 h]; Public Water - 400mm Diameter Depth: 0.00m -1.50m [28.82]; Public Water - 400mm Diameter Depth: 1.51m - 2.50m [1.02]; Public Water - 400mm Diameter Depth exceeds 2.50m [0.22] | 17,762.27 | 17,762.27 | A9870 | 1 | Out Sid |
| CON-LEG101-OBA-1220 |  | Backfilling to Subgrade Elevation [Outside Boundary Area ] 0 - 900 m | 10d | 2026-07-08 A | 2026-07-09 A | CON-LEG101-OBA-1210, CON-LEG101-EN-3440 | 100% |  | 2026-08-11 | 2026-08-22 |  |  | Excavator [56.8 h]; Water Tanker [39.6 h]; Road Roller [48 h]; Bucket [48 h]; Compactor [48 h]; Labor [100 h]; Driver [50 h]; Eq. Operator [200 h]; Public Water - 400mm Diameter Depth: 0.00m -1.50m [57.64]; Public Water - 400mm Diameter Depth: 1.51m - 2.50m [2.02]; Public Water - 400mm Diameter Depth exceeds 2.50m [0.45] | 35,517.13 | 35,517.13 | A9990 | 1 | Out Sid |
| CON-LEG101-OBA-1190 |  | Testing for Public Water Utility Distribution Piping [Outside Boundary Area ] 0 - 900 m | 13d | 2026-07-22 A | 2026-07-23 A | CON-LEG101-OBA-1180 | 100% |  | 2026-07-22 | 2026-08-05 |  |  | Labor [400 h]; Skilled Labor [200 h]; Pipe Fitter [200 h]; Public Water - 400mm Diameter Depth: 0.00m -1.50m [57.64]; Public Water - 400mm Diameter Depth: 1.51m - 2.50m [2.03]; Public Water - 400mm Diameter Depth exceeds 2.50m [0.45] | 35,526.47 | 35,526.47 | A9490 | 1 | Out Sid |
|  | 1 | **Valves/Chamber** |  | 2026-06-07 | 2026-11-05 |  |  |  |  |  |  |  |  |  |  |  |  |  |
| CON-LEG101-OBA-1420 |  | Installation of Air Valve chambers [Outside Boundary Area ] 0 - 900 m | 21d | 2026-06-07 A | 2026-11-05 | CON-LEG101-OBA-1180 | 95% | 1.05d | 2026-07-27 | 2026-08-20 | 207.21d | 0d | Public Water - Air valve chamber; on pipe from 355 to 630 mm [0.67]; Excavator [48 h]; Labor [100 h]; Skilled Labor [50 h]; Eq. Operator [50 h]; Pipe Fitter [50 h] | 50,250 | 47,737.5 | A10610 | 0.9 | Out Sid |
| CON-LEG101-OBA-1430 |  | Installation of Air Valves [Outside Boundary Area ] 0 - 900 m | 10d | 2026-06-07 A | 2026-11-05 | CON-LEG101-OBA-1420 | 95% | 0.5d | 2026-08-18 | 2026-08-30 | 207.21d | 0d | Public Water - Air valve complete with gate valves, on pipes with diameter from 355 to 630 mm [0.67]; Excavator [48 h]; Labor [100 h]; Skilled Labor [50 h]; Eq. Operator [50 h]; Pipe Fitter [50 h] | 10,050 | 9,547.5 | A10370 | 0.9 | Out Sid |
|  | 1 | **Public Water Utility Distribution (901 - 1800) m** |  | 2026-04-01 | 2026-11-07 |  |  |  |  |  |  |  |  |  |  |  |  |  |
| CON-LEG101-OBA-1460 |  | Permits for Starting Works for Area 901 - 1800 m | 12d | 2026-04-01 A | 2026-04-01 A | CON-LEG101-OBA-1420, CON-LEG101-OBA-1220, CON-LEG101-OBA-1430 | 100% |  | 2026-08-06 | 2026-08-20 |  |  |  |  |  |  | 1 | Out Sid |
| CON-LEG101-OBA-1470 |  | Detour & Safety works for Area 901 - 1800 m | 8d | 2026-04-02 A | 2026-04-04 A | CON-LEG101-OBA-1460 | 100% |  | 2026-08-20 | 2026-08-30 |  |  |  |  |  |  | 1 | Out Sid |
|  | 2 | **Pipe Work** |  | 2026-04-05 | 2026-09-06 |  |  |  |  |  |  |  |  |  |  |  |  |  |
| CON-LEG101-OBA-1280 |  | Excavation for Public Water Utility Distribution Piping [Outside Boundary Area ] 901 - 1800 m | 21d | 2026-04-05 A | 2026-05-05 A | CON-LEG101-OBA-1460, CON-LEG101-OBA-1470 | 100% |  | 2026-08-30 | 2026-09-24 |  |  | Excavator [67.71 h]; Water Tanker [67.71 h]; Truck [192 h]; Crane [96 h]; Labor [400 h]; Driver [300 h]; Eq. Operator [200 h]; Public Water - 400mm Diameter Depth: 0.00m -1.50m [115.28]; Public Water - 400mm Diameter Depth: 1.51m - 2.50m [4.06]; Public Water - 400mm Diameter Depth exceeds 2.50m [0.89] | 71,048.67 | 71,048.67 | A9120 | 1 | Out Sid |
| CON-LEG101-OBA-1290 |  | Granular bedding for Public Water Utility Distribution Piping [Outside Boundary Area ] 901 - 1800 m | 13d | 2026-04-21 A | 2026-05-10 A | CON-LEG101-OBA-1280 | 100% |  | 2026-09-24 | 2026-10-10 |  |  | Loader [96 h]; Truck [151.69 h]; Driver [153.85 h]; Eq. Operator [100 h]; Public Water - 400mm Diameter Depth: 0.00m -1.50m [28.82]; Public Water - 400mm Diameter Depth: 1.51m - 2.50m [1.02]; Public Water - 400mm Diameter Depth exceeds 2.50m [0.22] | 17,762.27 | 17,762.27 | A9240 | 1 | Out Sid |
| CON-LEG101-OBA-1300 |  | Installation of Pipe for Public Water Utility Distribution Piping [Outside Boundary Area ] 901 - 1800 m | 21d | 2026-04-23 A | 2026-05-12 A | CON-LEG101-OBA-1290 | 100% |  | 2026-10-10 | 2026-11-03 |  |  | Excavator [96 h]; Crane [96 h]; Labor [400 h]; Skilled Labor [200 h]; Eq. Operator [200 h]; Plumber [100 h]; Pipe Fitter [100 h]; Public Water - 400mm Diameter Depth: 0.00m -1.50m [259.39]; Public Water - 400mm Diameter Depth: 1.51m - 2.50m [9.15]; Public Water - 400mm Diameter Depth exceeds 2.50m [2.01] | 159,863.87 | 159,863.87 | A9360 | 1 | Out Sid |
| CON-LEG101-OBA-1320 |  | Granular Surround for Public Water Utility Distribution Piping [Outside Boundary Area ] 901 - 1800 m | 13d | 2026-05-13 A | 2026-05-18 A | CON-LEG101-OBA-1310 | 100% |  | 2026-09-09 | 2026-09-26 |  |  | Loader [96 h]; Truck [207.38 h]; Driver [207.69 h]; Eq. Operator [100 h]; Public Water - 400mm Diameter Depth: 0.00m -1.50m [28.82]; Public Water - 400mm Diameter Depth: 1.51m - 2.50m [1.02]; Public Water - 400mm Diameter Depth exceeds 2.50m [0.22] | 17,762.27 | 17,762.27 | A9750 | 1 | Out Sid |
| CON-LEG101-OBA-1330 |  | Installation of Micron Marker Magnetic Tape [Outside Boundary Area ] 901 - 1800 m | 3d | 2026-05-19 A | 2026-05-20 A | CON-LEG101-OBA-1320 | 100% |  | 2026-09-13 | 2026-09-16 |  |  | Labor [100 h]; Public Water - 400mm Diameter Depth: 0.00m -1.50m [28.82]; Public Water - 400mm Diameter Depth: 1.51m - 2.50m [1.02]; Public Water - 400mm Diameter Depth exceeds 2.50m [0.22] | 17,762.27 | 17,762.27 | A9870 | 1 | Out Sid |
| CON-LEG101-OBA-1340 |  | Backfilling to Subgrade Elevation [Outside Boundary Area ] 901 - 1800 m | 10d | 2026-05-21 A | 2026-05-23 A | CON-LEG101-OBA-1330 | 100% |  | 2026-09-16 | 2026-09-29 |  |  | Excavator [48 h]; Water Tanker [48 h]; Road Roller [48 h]; Bucket [48 h]; Compactor [48 h]; Labor [100 h]; Driver [50 h]; Eq. Operator [200 h]; Public Water - 400mm Diameter Depth: 0.00m -1.50m [57.64]; Public Water - 400mm Diameter Depth: 1.51m - 2.50m [2.03]; Public Water - 400mm Diameter Depth exceeds 2.50m [0.45] | 35,526.47 | 35,526.47 | A9990 | 1 | Out Sid |
| CON-LEG101-OBA-1310 |  | Testing for Public Water Utility Distribution Piping [Outside Boundary Area ] 901 - 1800 m | 13d | 2026-07-25 A | 2026-09-06 A | CON-LEG101-OBA-1300 | 100% |  | 2026-08-09 | 2026-08-24 |  |  | Labor [500 h]; Skilled Labor [200 h]; Pipe Fitter [200 h]; Public Water - 400mm Diameter Depth: 0.00m -1.50m [57.64]; Public Water - 400mm Diameter Depth: 1.51m - 2.50m [2.03]; Public Water - 400mm Diameter Depth exceeds 2.50m [0.45] | 35,526.47 | 35,526.47 | A9490 | 1 | Out Sid |

| ID | WBS | Activity | Duration | Start | Finish | Predecessors | Complete | Remaining | Planned start | Planned finish | Total float | Free float | Resources | Cost | Actual cost | Mapping Sheet Activity ID | % A | JEDDAH 1 - Area Name |
| --- | --- | --- | --- | --- | --- | --- | --- | --- | --- | --- | --- | --- | --- | --- | --- | --- | --- | --- |
|  | 1 | **Valves/Chamber** |  | 2026-06-03 | 2026-11-07 |  |  |  |  |  |  |  |  |  |  |  |  |  |
| CON-LEG101-OBA-1440 |  | Installation of Air Valve chambers [Outside Boundary Area ] 901 - 1800 m | 21d | 2026-06-03 A | 2026-11-05 | CON-LEG101-OBA-1300 | 98% | 0.42d | 2026-09-10 | 2026-10-06 | 207.21d | 0d | Public Water - Air valve chamber; on pipe from 355 to 630 mm [0.67]; Excavator [48 h]; Labor [300 h]; Skilled Labor [50 h]; Eq. Operator [50 h]; Plumber; Pipe Fitter [50 h] | 50,250 | 49,245 | A10610 | 0.98 | Out Sid |
| CON-LEG101-OBA-1450 |  | Installation of Air Valves [Outside Boundary Area ] 901 - 1800 m | 10d | 2026-08-01 A | 2026-11-07 | CON-LEG101-OBA-1440 | 98% | 0.2d | 2026-08-31 | 2026-09-12 | 207.21d | 0d | Public Water - Air valve complete with gate valves, on pipes with diameter from 355 to 630 mm [0.67]; Public Water - On 315-400 mm diameter pipeline [0.67]; Excavator [48 h]; Labor [233.33 h]; Skilled Labor [50 h]; Eq. Operator [50 h]; Plumber; Pipe Fitter [50 h] | 40,200 | 39,396 | A10370 | 0.98 | Out Sid |
| CON-LEG101-OBA-1510 |  | Installation of Butterfly valves, on pipe with diameter 400 mm | 6d | 2026-08-03 A | 2026-11-07 | CON-LEG101-OBA-1340, CON-LEG101-OBA-1450 | 98% | 0.12d | 2026-09-12 | 2026-09-19 | 207.21d | 195.91d | Public Water - Butterfly valves, on pipe with diameter 400 mm [0.67]; Plumber | 30,150 | 29,547 |  | 0.98 | Out Sid |
|  | 2 | **Public Water Utility Distribution (1801 - 2780) m** |  | 2026-04-25 | 2026-09-07 |  |  |  |  |  |  |  |  |  |  |  |  |  |
| CON-LEG101-OBA-1490 |  | Permits for Starting Works for Area 1800 - 2780 m | 12d | 2026-04-25 A | 2026-04-25 A | CON-LEG101-OBA-1440, CON-LEG101-OBA-1340, CON-LEG101-OBA-1070 SS, CON-LEG101-OBA-1510 | 100% |  | 2027-03-18 | 2027-03-31 |  |  |  |  |  |  | 1 | Out Sid |
| CON-LEG101-OBA-1480 |  | Detour & Safety works for Area 1800 - 2780 m | 8d | 2026-04-26 A | 2026-04-27 A | CON-LEG101-OBA-1490 | 100% |  | 2027-04-01 | 2027-04-10 |  |  |  |  |  |  | 1 | Out Sid |
|  | 2 | **Pipe Work** |  | 2026-04-28 | 2026-09-07 |  |  |  |  |  |  |  |  |  |  |  |  |  |
| CON-LEG101-OBA-1350 |  | Excavation for Public Water Utility Distribution Piping [Outside Boundary Area ] 1800 - 2780 m | 15d | 2026-04-28 A | 2026-09-01 A | CON-LEG101-OBA-1480 | 100% |  | 2027-04-11 | 2027-04-27 |  |  | Excavator [96 h]; Water Tanker [96 h]; Truck [192 h]; Crane [96 h]; Labor [400 h]; Driver [300 h]; Eq. Operator [200 h]; Public Water - 400mm Diameter Depth: 0.00m -1.50m [115.28]; Public Water - 400mm Diameter Depth: 1.51m - 2.50m [4.06]; Public Water - 400mm Diameter Depth exceeds 2.50m [0.89] | 71,048.67 | 71,048.67 | A9120 | 1 | Out Sid |
| CON-LEG101-OBA-1360 |  | Granular bedding for Public Water Utility Distribution Piping [Outside Boundary Area ] 1800 - 2780 m | 13d | 2026-06-27 A | 2026-09-01 A | CON-LEG101-OBA-1350 | 100% |  | 2027-03-24 | 2027-04-08 |  |  | Loader [96 h]; Truck [96 h]; Driver [100 h]; Eq. Operator [100 h]; Public Water - 400mm Diameter Depth: 0.00m -1.50m [28.82]; Public Water - 400mm Diameter Depth: 1.51m - 2.50m [1.02]; Public Water - 400mm Diameter Depth exceeds 2.50m [0.22] | 17,762.27 | 17,762.27 | A9240 | 1 | Out Sid |
| CON-LEG101-OBA-1370 |  | Installation of Pipe for Public Water Utility Distribution Piping [Outside Boundary Area ] 1800 - 2780 m | 21d | 2026-06-30 A | 2026-09-02 A | CON-LEG101-OBA-1360 | 100% |  | 2027-04-08 | 2027-05-03 |  |  | Excavator [96 h]; Crane [96 h]; Labor [300 h]; Skilled Labor [200 h]; Eq. Operator [200 h]; Plumber [100 h]; Pipe Fitter [100 h]; Public Water - 400mm Diameter Depth: 0.00m -1.50m [259.39]; Public Water - 400mm Diameter Depth: 1.51m - 2.50m [9.15]; Public Water - 400mm Diameter Depth exceeds 2.50m [2.01] | 159,863.87 | 159,863.87 | A9360 | 1 | Out Sid |
| CON-LEG101-OBA-1390 |  | Granular Surround for Public Water Utility Distribution Piping [Outside Boundary Area ] 1800 - 2780 m | 13d | 2026-07-02 A | 2026-09-02 A | CON-LEG101-OBA-1380 | 100% |  | 2027-05-23 | 2027-06-07 |  |  | Loader [96 h]; Truck [200 h]; Driver [400 h]; Eq. Operator [400 h]; Public Water - 400mm Diameter Depth: 0.00m -1.50m [28.82]; Public Water - 400mm Diameter Depth: 1.51m - 2.50m [1.02]; Public Water - 400mm Diameter Depth exceeds 2.50m [0.22] | 17,762.27 | 17,762.27 | A9750 | 1 | Out Sid |
| CON-LEG101-OBA-1400 |  | Installation of Micron Marker Magnetic Tape [Outside Boundary Area ] 1800 - 2780 m | 3d | 2026-07-04 A | 2026-09-03 A | CON-LEG101-OBA-1390 | 100% |  | 2027-06-07 | 2027-06-10 |  |  | Labor [400 h]; Public Water - 400mm Diameter Depth: 0.00m -1.50m [28.82]; Public Water - 400mm Diameter Depth: 1.51m - 2.50m [1.02]; Public Water - 400mm Diameter Depth exceeds 2.50m [0.22] | 17,762.27 | 17,762.27 | A9870 | 1 | Out Sid |
| CON-LEG101-OBA-1410 |  | Backfilling to Subgrade Elevation [Outside Boundary Area ] 1800 - 2780 m | 10d | 2026-07-05 A | 2026-09-03 A | CON-LEG101-OBA-1400 | 100% |  | 2027-06-10 | 2027-06-22 |  |  | Excavator [48 h]; Water Tanker [100 h]; Road Roller [48 h]; Bucket [48 h]; Compactor [48 h]; Labor [500 h]; Driver [50 h]; Eq. Operator [200 h]; Public Water - 400mm Diameter Depth: 0.00m -1.50m [57.64]; Public Water - 400mm Diameter Depth: 1.51m - 2.50m [2.03]; Public Water - 400mm Diameter Depth exceeds 2.50m [0.45] | 35,526.47 | 35,526.47 | A9990 | 1 | Out Sid |
| CON-LEG101-OBA-1380 |  | Testing for Public Water Utility Distribution Piping [Outside Boundary Area ] 1800 - 2780 m | 13d | 2026-09-07 A | 2026-09-07 A | CON-LEG101-OBA-1370 | 100% |  | 2027-05-01 | 2027-05-20 |  |  | Labor [623.08 h]; Skilled Labor [200 h]; Pipe Fitter [200 h]; Public Water - 400mm Diameter Depth: 0.00m -1.50m [57.64]; Public Water - 400mm Diameter Depth: 1.51m - 2.50m [2.03]; Public Water - 400mm Diameter Depth exceeds 2.50m [0.45] | 35,526.47 | 35,526.47 | A9490 | 1 | Out Sid |
|  | 8 | **Roads Finishing** |  | 2026-05-06 | 2027-12-22 |  |  |  |  |  |  |  |  |  |  |  |  |  |
|  | 1 | **Local – 01** |  | 2026-05-06 | 2027-11-15 |  |  |  |  |  |  |  |  |  |  |  |  |  |
|  | 1 | **LOCAL - 01 Segment-01 (From 0+000 to 1+066)** |  | 2026-05-06 | 2027-10-06 |  |  |  |  |  |  |  |  |  |  |  |  |  |
|  | 7 | **Concrete Curb** |  | 2026-05-06 | 2026-10-22 |  |  |  |  |  |  |  |  |  |  |  |  |  |
| CON-LEG101-LR-6180 |  | Installation of Precast Concrete Curb [Local – 01 Segment-01] | 18d | 2026-05-06 A | 2026-10-22 A | CON-LEG101-LR-5880, CON-LEG101-LR-2070, CON-LEG101-LR-10740, CON-LEG101-LR-8080, CON-LEG101-LR-7880, CON-LEG101-LR-2470, CON-LEG101-LR-9340, CON-LEG101-LR-8290, CON-LEG101-PR-1320, CON-LEG101-PR-1930, CON-LEG101-LR-7980, CON-LEG101-PR-2550, CON-LEG101-PR-1540 | 100% |  | 2027-04-27 | 2027-05-22 |  |  | Precast Concrete Kerb, Type K1-A [2022.06]; Precast Concrete Kerb, Type K4 [1587.4]; Precast Concrete Kerb, Type K1-B [832.14]; Precast Concrete Kerb, Type K NEW (Flushed Kerb) [1587.4]; Labor [200 h]; Skilled Labor [200 h]; Mason | 340,102.3 | 340,102.3 | A2740 | 0.8 | L01 -01 |
|  | 1 | **Asphalt Wearing Course** |  | 2026-09-29 | 2027-08-10 |  |  |  |  |  |  |  |  |  |  |  |  |  |
| CON-LEG101-LR-5980 |  | Tack coat (RC2) [Local – 01 Segment-01] | 6d | 2026-09-29 A | 2027-08-08 | CON-LEG101-LR-6180, CON-LEG101-LR-5880 | 70% | 1.8d | 2027-07-06 | 2027-07-13 | -55.85d | 0d | Bituminous concrete wearing course, (Grading I - Class A), including tack coat (RC2) according to drawings. [178.49]; Water Tanker [48 h]; Grader [48 h]; Truck [48 h]; Road Roller [48 h]; Asphalt Paver [48 h]; Labor [50 h]; Driver [100 h]; Eq. Operator [150 h] | 107,094 | 74,965.8 | A2450 |  | L01 -01 |
| CON-LEG101-LR-6080 |  | Bituminous wearing course [Local – 01 Segment-01] | 6d | 2026-09-29 A | 2027-08-10 | CON-LEG101-LR-5980, CON-LEG101-PR-1510, CON-LEG101-EN-3470 | 70% | 1.8d | 2027-07-13 | 2027-07-20 | -55.85d | 0d | Bituminous concrete wearing course, (Grading I - Class A), including tack coat (RC2) according to drawings. [416.47]; Water Tanker [48 h]; Truck [240 h]; Road Roller [240 h]; Asphalt Paver [48 h]; Labor [450 h]; Driver [300 h]; Eq. Operator [300 h] | 249,882 | 174,917.4 | A2560 |  | L01 -01 |
|  | 3 | **Interlocking block roads/on-street parking** |  | 2026-06-13 | 2026-10-12 |  |  |  |  |  |  |  |  |  |  |  |  |  |
| CON-LEG101-LR-6380 |  | Interlocking block pavers for roads/on-street parking [Local – 01 Segment-01] | 19d | 2026-06-13 A | 2026-10-12 A | CON-LEG101-LR-6180, CON-LEG101-LR-6080, CON-LEG101-EN-3450, CON-LEG101-MS-1140, CON-LEG101-MS-1140 FF | 100% |  | 2027-06-16 | 2027-07-08 |  |  | Interlocking block pavers for roads/on-street parking [1938.14]; Labor [1210.53 h]; Mason [905.26 h] | 155,051.2 | 155,051.2 | A2990 | 0.6 | L01 -01 |

| ID | WBS | Activity | Duration | Start | Finish | Predecessors | Complete | Remaining | Planned start | Planned finish | Total float | Free float | Resources | Cost | Actual cost | Mapping Sheet Activity ID | % A | JEDDAH 1 - Area Name |
| --- | --- | --- | --- | --- | --- | --- | --- | --- | --- | --- | --- | --- | --- | --- | --- | --- | --- | --- |
|  | 4 | **Interlocking block sidewalk/footpath** |  | 2026-06-26 | 2026-10-26 |  |  |  |  |  |  |  |  |  |  |  |  |  |
| CON-LEG101-LR-6280 |  | Interlocking block pavers for sidewalk/footpath [Local – 01 Segment-01] | 19d | 2026-06-26 A | 2026-10-26 A | CON-LEG101-LR-6180, CON-LEG101-LR-6380, CON-LEG101-PR-1570 | 100% |  | 2027-07-12 | 2027-08-03 |  |  | Interlocking block pavers for sidewalk/footpath [3881.31]; Labor [2000 h]; Mason [1136.84 h] | 271,691.7 | 271,691.7 | A2870 | 0.6 | L01 -01 |
|  | 5 | **Pavement Markings** |  | 2027-08-28 | 2027-09-15 |  |  |  |  |  |  |  |  |  |  |  |  |  |
| CON-LEG101-LR-6580 |  | Pavement Markings (White Paint/Yellow Paint) [Local – 01 Segment-01] | 6d | 2027-08-28 | 2027-09-04 | CON-LEG101-PR-2070, CON-LEG101-LR-6180 SS, CON-LEG101-LR-6080, CON-LEG101-PR-1600 |  |  |  |  | -71.25d | 0d | Retroreflective Thermoplastic white paint [291.45]; Retroreflective Thermoplastic yellow paint including Rumble strips [88.44]; Labor [200 h]; Skilled Labor [50 h] | 17,095.05 |  | A3270 |  | L01 -01 |
| CON-LEG101-LR-6680 |  | Handicap ramp [Local – 01 Segment-01] | 10d | 2027-09-04 | 2027-09-15 | CON-LEG101-LR-6580, CON-LEG101-PR-2600 |  |  |  |  | -66.25d | 0d | Handicap ramp [11.66]; Labor [200 h]; Carpenter [50 h] | 17,490 |  | A3390 |  | L01 -01 |
|  | 6 | **Traffic Signs** |  | 2026-07-05 | 2027-10-06 |  |  |  |  |  |  |  |  |  |  |  |  |  |
| CON-LEG101-LR-6780 |  | Installation of Traffic Signs [Local – 01 Segment-01] | 19d | 2026-07-05 A | 2027-10-06 | CON-LEG101-PR-2060, CON-LEG101-LR-6480, CON-LEG101-PR-1630 | 60% | 7.6d | 2027-07-18 | 2027-08-09 | -45.05d | 10.4d | Traffic signs, ground mounted, Sheet Aluminum, (breakaway)Single post, with all accessories [16.68]; Traffic signs, ground mounted, Sheet Aluminum, (breakaway) Double post with all accessories [9.15]; Traffic signs, ground mounted, Sheet Alumenium, (breakaway) One road sign assembly mounted on two tubular post with all accessories [0.67]; Labor [215.79 h]; Skilled Labor [100 h] | 79,699 | 47,819.4 | A3550 | 0.6 | L01 -01 |
| CON-LEG101-LR-6480 |  | Retroreflective Plastic Cones [Local – 01 Segment-01] | 9d | 2027-09-15 | 2027-09-27 | CON-LEG101-PR-2060, CON-LEG101-LR-6680, CON-LEG101-PR-1630 |  |  |  |  | -65.25d | 0d | Retroreflective Plastic Cones [12.06]; Labor [300 h]; Carpenter [50 h] | 6,030 |  | A3120 |  | L01 -01 |
|  | 2 | **LOCAL - 01 Segment-02 (From 1+066 to 2+133)** |  | 2026-05-12 | 2027-10-23 |  |  |  |  |  |  |  |  |  |  |  |  |  |
|  | 7 | **Concrete Curb** |  | 2026-05-12 | 2026-06-21 |  |  |  |  |  |  |  |  |  |  |  |  |  |
| CON-LEG101-LR-6190 |  | Installation of Precast Concrete Curb [Local – 01 Segment-02] | 20d | 2026-05-12 A | 2026-06-21 A | CON-LEG101-LR-5890, CON-LEG101-LR-2090, CON-LEG101-LR-10750, CON-LEG101-LR-7890, CON-LEG101-LR-8090, CON-LEG101-LR-2480, CON-LEG101-LR-9350, CON-LEG101-LR-8300, CON-LEG101-LR-6180, CON-LEG101-PR-1320, CON-LEG101-LR-7990, CON-LEG101-PR-1930, CON-LEG101-PR-1540 | 100% |  | 2027-05-25 | 2027-06-17 |  |  | Precast Concrete Kerb, Type K1-A [2022.06]; Precast Concrete Kerb, Type K4 [1587.4]; Precast Concrete Kerb, Type K1-B [832.14]; Precast Concrete Kerb, Type K NEW (Flushed Kerb) [1587.4]; Labor [310 h]; Skilled Labor [200 h] | 340,102.3 | 340,102.3 | A2750 | 1 | L01 -02 |
|  | 1 | **Asphalt Wearing Course** |  | 2026-09-29 | 2027-08-14 |  |  |  |  |  |  |  |  |  |  |  |  |  |
| CON-LEG101-LR-5990 |  | Tack coat (RC2) [Local – 01 Segment-02] | 6d | 2026-09-29 A | 2027-08-12 | CON-LEG101-LR-6190, CON-LEG101-LR-5890, CON-LEG101-LR-6080 | 70% | 1.8d | 2027-07-20 | 2027-07-27 | -47.05d | 0d | Bituminous concrete wearing course, (Grading I - Class A), including tack coat (RC2) according to drawings. [178.49]; Water Tanker [200 h]; Grader [248 h]; Truck [150 h]; Road Roller [400 h]; Asphalt Paver [100 h]; Labor [100 h]; Driver [400 h]; Eq. Operator [450 h] | 107,094 | 74,965.8 | A2460 |  | L01 -02 |
| CON-LEG101-LR-6090 |  | Bituminous wearing course [Local – 01 Segment-02] | 6d | 2026-09-29 A | 2027-08-14 | CON-LEG101-LR-5990, CON-LEG101-PR-1510, CON-LEG101-EN-3470 | 70% | 1.8d | 2027-07-27 | 2027-08-03 | -47.05d | 0d | Bituminous concrete wearing course, (Grading I - Class A), including tack coat (RC2) according to drawings. [416.47]; Water Tanker [100 h]; Truck [350 h]; Road Roller [400 h]; Asphalt Paver [200 h]; Labor [450 h]; Driver [400 h]; Eq. Operator [600 h] | 249,882 | 174,917.4 | A2570 |  | L01 -02 |
|  | 3 | **Interlocking block roads/on-street parking** |  | 2026-07-01 | 2026-07-20 |  |  |  |  |  |  |  |  |  |  |  |  |  |
| CON-LEG101-LR-6390 |  | Interlocking block pavers for roads/on-street parking [Local – 01 Segment-02] | 10d | 2026-07-01 A | 2026-07-20 A | CON-LEG101-LR-6190, CON-LEG101-LR-6090, CON-LEG101-EN-3450, CON-LEG101-LR-6280 | 100% |  | 2027-08-03 | 2027-08-15 |  |  | Interlocking block pavers for roads/on-street parking [1938.14]; Labor [1200 h]; Mason [400 h] | 155,051.2 | 155,051.2 | A3000 | 1 | L01 -02 |
|  | 4 | **Interlocking block sidewalk/footpath** |  | 2026-07-01 | 2026-07-20 |  |  |  |  |  |  |  |  |  |  |  |  |  |
| CON-LEG101-LR-6290 |  | Interlocking block pavers for sidewalk/footpath [Local – 01 Segment-02] | 10d | 2026-07-01 A | 2026-07-20 A | CON-LEG101-LR-6190, CON-LEG101-LR-6390, CON-LEG101-PR-1570 | 100% |  | 2027-08-15 | 2027-08-26 |  |  | Interlocking block pavers for sidewalk/footpath [3881.3]; Labor [12800 h]; Mason [800 h] | 271,691 | 271,691 | A2880 | 1 | L01 -02 |
|  | 5 | **Pavement Markings** |  | 2027-09-04 | 2027-10-04 |  |  |  |  |  |  |  |  |  |  |  |  |  |
| CON-LEG101-LR-6590 |  | Pavement Markings (White Paint/Yellow Paint) [Local – 01 Segment-02] | 15d | 2027-09-04 | 2027-09-21 | CON-LEG101-PR-2070, CON-LEG101-LR-6190, CON-LEG101-PR-1600, CON-LEG101-LR-6580 |  |  |  |  | -71.25d | 0d | Retroreflective Thermoplastic white paint [291.45]; Retroreflective Thermoplastic yellow paint including Rumble strips [88.44]; Labor [200 h]; Skilled Labor [50 h] | 17,095.05 |  | A3280 |  | L01 -02 |
| CON-LEG101-LR-6690 |  | Handicap ramp [Local – 01 Segment-02] | 10d | 2027-09-21 | 2027-10-04 | CON-LEG101-LR-6590, CON-LEG101-PR-2600, CON-LEG101-LR-6680 |  |  |  |  | -71.25d | 0d | Handicap ramp [11.66]; Labor [400 h]; Carpenter [50 h] | 17,490 |  | A3400 |  | L01 -02 |
|  | 6 | **Traffic Signs** |  | 2026-07-06 | 2027-10-23 |  |  |  |  |  |  |  |  |  |  |  |  |  |
| CON-LEG101-LR-6790 |  | Installation of Traffic Signs [Local – 01 Segment-02] | 21d | 2026-07-06 A | 2027-10-23 | CON-LEG101-PR-2060, CON-LEG101-LR-6490, CON-LEG101-PR-1630, CON-LEG101-LR-6780 | 80% | 4.2d | 2027-08-09 | 2027-09-02 | -55.45d | 15.8d | Traffic signs, ground mounted, Sheet Aluminum, (breakaway)Single post, with all accessories [16.68]; Traffic signs, ground mounted, Sheet Aluminum, (breakaway) Double post with all accessories [9.15]; Traffic signs, ground mounted, Sheet Alumenium, (breakaway) One road sign assembly mounted on two tubular post with all accessories [0.67]; Labor [100 h]; Skilled Labor [100 h] | 79,699 | 63,759.2 | A3560 | 0.75 | L01 -02 |
| CON-LEG101-LR-6490 |  | Retroreflective Plastic Cones [Local – 01 Segment-02] | 12d | 2027-10-04 | 2027-10-18 | CON-LEG101-PR-2060, CON-LEG101-LR-6690, CON-LEG101-PR-1630, CON-LEG101-LR-6480 |  |  |  |  | -71.25d | 0d | Retroreflective Plastic Cones; Labor [200 h]; Carpenter [50 h] |  |  | A3130 |  | L01 -02 |

| ID | WBS | Activity | Duration | Start | Finish | Predecessors | Complete | Remaining | Planned start | Planned finish | Total float | Free float | Resources | Cost | Actual cost | Mapping Sheet Activity ID | % A | JEDDAH 1 - Area Name |
| --- | --- | --- | --- | --- | --- | --- | --- | --- | --- | --- | --- | --- | --- | --- | --- | --- | --- | --- |
|  | 3 | **LOCAL - 01 Segment-03 (From 2+133 to 3+200)** |  | 2026-07-11 | 2027-11-15 |  |  |  |  |  |  |  |  |  |  |  |  |  |
|  | 7 | **Concrete Curb** |  | 2026-07-21 | 2026-09-16 |  |  |  |  |  |  |  |  |  |  |  |  |  |
| CON-LEG101-LR-6200 |  | Installation of Precast Concrete Curb [Local – 01 Segment-03] | 21d | 2026-07-21 A | 2026-09-16 A | CON-LEG101-LR-5900, CON-LEG101-LR-2100, CON-LEG101-LR-10760, CON-LEG101-LR-7900, CON-LEG101-LR-8000, CON-LEG101-LR-8100, CON-LEG101-LR-8300, CON-LEG101-LR-9350, CON-LEG101-LR-2480, CON-LEG101-LR-6190, CON-LEG101-PR-1540 | 100% |  | 2027-05-30 | 2027-06-23 |  |  | Precast Concrete Kerb, Type K1-A [2022.06]; Precast Concrete Kerb, Type K4 [1587.4]; Precast Concrete Kerb, Type K1-B [832.14]; Precast Concrete Kerb, Type K NEW (Flushed Kerb) [1587.4]; Labor [300 h]; Skilled Labor [200 h] | 340,102.3 | 340,102.3 | A2760 | 0.8 | L01-03 |
|  | 1 | **Asphalt Wearing Course** |  | 2026-10-24 | 2027-08-15 |  |  |  |  |  |  |  |  |  |  |  |  |  |
| CON-LEG101-LR-6000 |  | Tack coat (RC2) [Local – 01 Segment-03] | 4d | 2026-10-24 A | 2027-08-15 | CON-LEG101-LR-6200, CON-LEG101-LR-5900, CON-LEG101-LR-6090 | 90% | 0.4d | 2027-08-10 | 2027-08-15 | -47.05d | 0d | Bituminous concrete wearing course, (Grading I - Class A), including tack coat (RC2) according to drawings. [178.49]; Water Tanker [200 h]; Grader [48 h]; Truck [48 h]; Road Roller [48 h]; Asphalt Paver [40 h]; Labor [100 h]; Driver [100 h]; Eq. Operator [150 h] | 107,094 | 96,384.6 | A2470 |  | L01-03 |
| CON-LEG101-LR-6100 |  | Bituminous wearing course [Local – 01 Segment-03] | 4d | 2026-10-24 A | 2027-08-15 | CON-LEG101-LR-6000, CON-LEG101-PR-1510, CON-LEG101-EN-3470 | 90% | 0.4d | 2027-08-15 | 2027-08-19 | -47.05d | 0d | Bituminous concrete wearing course, (Grading I - Class A), including tack coat (RC2) according to drawings. [416.47]; Water Tanker [100 h]; Truck [240 h]; Road Roller [240 h]; Asphalt Paver [40 h]; Labor [450 h]; Driver [300 h]; Eq. Operator [300 h] | 249,882 | 224,893.8 | A2580 |  | L01-03 |
|  | 3 | **Interlocking block roads/on-street parking** |  | 2026-08-22 | 2026-09-19 |  |  |  |  |  |  |  |  |  |  |  |  |  |
| CON-LEG101-LR-6400 |  | Interlocking block pavers for roads/on-street parking [Local – 01 Segment-03] | 18d | 2026-08-22 A | 2026-09-19 A | CON-LEG101-LR-6200, CON-LEG101-LR-6100, CON-LEG101-LR-5700 SS, CON-LEG101-EN-3450, CON-LEG101-LR-6290 | 100% |  | 2027-09-04 | 2027-09-26 |  |  | Interlocking block pavers for roads/on-street parking [1938.14]; Labor [800 h]; Mason [400 h] | 155,051.2 | 155,051.2 | A3010 | 0.65 | L01-03 |
|  | 4 | **Interlocking block sidewalk/footpath** |  | 2026-08-22 | 2026-09-20 |  |  |  |  |  |  |  |  |  |  |  |  |  |
| CON-LEG101-LR-6300 |  | Interlocking block pavers for sidewalk/footpath [Local – 01 Segment-03] | 19d | 2026-08-22 A | 2026-09-20 A | CON-LEG101-LR-6200, CON-LEG101-LR-6400, CON-LEG101-PR-1570 | 100% |  | 2027-09-26 | 2027-10-18 |  |  | Interlocking block pavers for sidewalk/footpath [3881.31]; Labor [1600 h]; Mason [800 h] | 271,691.7 | 271,691.7 | A2890 | 0.65 | L01-03 |
|  | 5 | **Pavement Markings** |  | 2027-09-21 | 2027-10-18 |  |  |  |  |  |  |  |  |  |  |  |  |  |
| CON-LEG101-LR-6600 |  | Pavement Markings (White Paint/Yellow Paint) [Local – 01 Segment-03] | 10d | 2027-09-21 | 2027-10-04 | CON-LEG101-PR-2070, CON-LEG101-LR-6200, CON-LEG101-PR-1600, CON-LEG101-LR-6590 |  |  |  |  | -71.25d | 0d | Retroreflective Thermoplastic white paint [291.45]; Retroreflective Thermoplastic yellow paint including Rumble strips [88.44]; Labor [200 h]; Skilled Labor [50 h] | 17,095.05 |  | A3290 |  | L01-03 |
| CON-LEG101-LR-6700 |  | Handicap ramp [Local – 01 Segment-03] | 12d | 2027-10-04 | 2027-10-18 | CON-LEG101-LR-6600, CON-LEG101-PR-2600, CON-LEG101-LR-6690 |  |  |  |  | -71.25d | 0d | Handicap ramp [11.66]; Labor [200 h]; Carpenter [50 h] | 17,490 |  | A3410 |  | L01-03 |
|  | 6 | **Traffic Signs** |  | 2026-07-11 | 2027-11-15 |  |  |  |  |  |  |  |  |  |  |  |  |  |
| CON-LEG101-LR-6800 |  | Installation of Traffic Signs [Local – 01 Segment-03] | 21d | 2026-07-11 A | 2027-11-15 | CON-LEG101-PR-2060, CON-LEG101-LR-6500, CON-LEG101-PR-1630, CON-LEG101-LR-6790 | 80% | 4.2d | 2027-09-09 | 2027-10-05 | -71.25d | 32.15d | Traffic signs, ground mounted, Sheet Aluminum, (breakaway)Single post, with all accessories [16.68]; Traffic signs, ground mounted, Sheet Aluminum, (breakaway) Double post with all accessories [9.15]; Traffic signs, ground mounted, Sheet Alumenium, (breakaway) One road sign assembly mounted on two tubular post with all accessories [1.34]; Labor [100 h]; Skilled Labor [100 h] | 106,499 | 85,199.2 | A3570 | 0.3 | L01-03 |
| CON-LEG101-LR-6500 |  | Retroreflective Plastic Cones [Local – 01 Segment-03] | 20d | 2027-10-18 | 2027-11-10 | CON-LEG101-PR-2060, CON-LEG101-LR-6700, CON-LEG101-PR-1630, CON-LEG101-LR-6490 |  |  |  |  | -71.25d | 0d | Retroreflective Plastic Cones; Labor [166.67 h]; Carpenter [50 h] |  |  | A3140 |  | L01-03 |
|  | 2 | **Local – 02** |  | 2026-06-09 | 2027-11-13 |  |  |  |  |  |  |  |  |  |  |  |  |  |
|  | 7 | **Concrete Curb** |  | 2026-06-09 | 2026-06-24 |  |  |  |  |  |  |  |  |  |  |  |  |  |
| CON-LEG101-LR-6210 |  | Installation of Precast Concrete Curb [Local – 02 ] | 15d | 2026-06-09 A | 2026-06-24 A | CON-LEG101-LR-5910, CON-LEG101-LR-2110, CON-LEG101-LR-10770, CON-LEG101-LR-7910, CON-LEG101-LR-8110, CON-LEG101-LR-2490, CON-LEG101-LR-9360, CON-LEG101-LR-8310, CON-LEG101-PR-1540 | 100% |  | 2027-04-10 | 2027-04-26 |  |  | Precast Concrete Kerb, Type K1-A [943.62]; Precast Concrete Kerb, Type K4 [740.79]; Precast Concrete Kerb, Type K1-B [388.34]; Precast Concrete Kerb, Type K NEW (Flushed Kerb) [740.77]; Labor [200 h]; Skilled Labor [200 h] | 158,713.7 | 158,713.7 | A2770 | 1 | L02 |
|  | 1 | **Asphalt Wearing Course** |  | 2026-10-04 | 2026-10-31 |  |  |  |  |  |  |  |  |  |  |  |  |  |
| CON-LEG101-LR-6010 |  | Tack coat (RC2) [Local – 02 ] | 2d | 2026-10-04 A | 2026-10-31 A | CON-LEG101-LR-6210, CON-LEG101-LR-5910, CON-LEG101-LR-6100 | 100% |  | 2027-08-08 | 2027-08-10 |  |  | Bituminous concrete wearing course, (Grading I - Class A), including tack coat (RC2) according to drawings. [118.99]; Water Tanker [200 h]; Grader [48 h]; Truck [48 h]; Road Roller [48 h]; Asphalt Paver [60 h]; Labor [100 h]; Driver [100 h]; Eq. Operator [150 h] | 71,394 | 71,394 | A2480 |  | L02 |
| CON-LEG101-LR-6110 |  | Bituminous wearing course [Local – 02 ] | 3d | 2026-10-04 A | 2026-10-31 A | CON-LEG101-LR-6010, CON-LEG101-PR-1510, CON-LEG101-EN-3470 | 100% |  | 2027-08-10 | 2027-08-14 |  |  | Bituminous concrete wearing course, (Grading I - Class A), including tack coat (RC2) according to drawings. [277.65]; Water Tanker [100 h]; Truck [240 h]; Road Roller [240 h]; Asphalt Paver [40 h]; Labor [450 h]; Driver [300 h]; Eq. Operator [300 h] | 166,590 | 166,590 | A2590 |  | L02 |
|  | 3 | **Interlocking block roads/on-street parking** |  | 2026-07-18 | 2026-07-28 |  |  |  |  |  |  |  |  |  |  |  |  |  |
| CON-LEG101-LR-6410 |  | Interlocking block pavers for roads/on-street parking [Local – 02 ] | 21d | 2026-07-18 A | 2026-07-28 A | CON-LEG101-LR-6210, CON-LEG101-LR-6110, CON-LEG101-LR-5710, CON-LEG101-EN-3450 | 100% |  | 2027-07-10 | 2027-08-03 |  |  | Interlocking block pavers for roads/on-street parking [904.46]; Labor [800 h]; Mason [400 h] | 72,356.8 | 72,356.8 | A3020 | 1 | L02 |

| ID | WBS | Activity | Duration | Start | Finish | Predecessors | Complete | Remaining | Planned start | Planned finish | Total float | Free float | Resources | Cost | Actual cost | Mapping Sheet Activity ID | % A | JEDDAH 1 - Area Name |
| --- | --- | --- | --- | --- | --- | --- | --- | --- | --- | --- | --- | --- | --- | --- | --- | --- | --- | --- |
|  | 4 | **Interlocking block sidewalk/footpath** |  | 2026-07-18 | 2027-08-22 |  |  |  |  |  |  |  |  |  |  |  |  |  |
| CON-LEG101-LR-6310 |  | Interlocking block pavers for sidewalk/footpath [Local – 02 ] | 21d | 2026-07-18 A | 2027-08-22 | CON-LEG101-LR-6210, CON-LEG101-LR-6410, CON-LEG101-PR-1570 | 70% | 6.3d | 2027-08-03 | 2027-08-28 | 0.65d | 104.05d | Interlocking block pavers for sidewalk/footpath [1811.28]; Labor [1200 h]; Mason [600 h] | 126,789.6 | 88,752.72 | A2900 | 1 | L02 |
|  | 5 | **Pavement Markings** |  | 2027-10-04 | 2027-10-27 |  |  |  |  |  |  |  |  |  |  |  |  |  |
| CON-LEG101-LR-6610 |  | Pavement Markings (White Paint/Yellow Paint) [Local – 02 ] | 10d | 2027-10-04 | 2027-10-16 | CON-LEG101-PR-2070, CON-LEG101-LR-6210, CON-LEG101-PR-1600, CON-LEG101-LR-6600 |  |  |  |  | -69.25d | 0d | Retroreflective Thermoplastic white paint [194.3]; Retroreflective Thermoplastic yellow paint including Rumble strips [58.96]; Labor [200 h]; Skilled Labor [50 h] | 11,396.7 |  | A3300 |  | L02 |
| CON-LEG101-LR-6710 |  | Handicap ramp [Local – 02 ] | 10d | 2027-10-16 | 2027-10-27 | CON-LEG101-LR-6610, CON-LEG101-PR-2600 |  |  |  |  | -69.25d | 0d | Handicap ramp [7.77]; Labor [214.29 h]; Carpenter [50 h] | 11,655 |  | A3420 |  | L02 |
|  | 6 | **Traffic Signs** |  | 2026-07-07 | 2027-11-13 |  |  |  |  |  |  |  |  |  |  |  |  |  |
| CON-LEG101-LR-6810 |  | Installation of Traffic Signs [Local – 02 ] | 21d | 2026-07-07 A | 2027-11-13 | CON-LEG101-PR-2060, CON-LEG101-LR-6510, CON-LEG101-PR-1630 | 80% | 4.2d | 2027-08-29 | 2027-09-22 | -69.25d | 34.15d | Traffic signs, ground mounted, Sheet Aluminum, (breakaway)Single post, with all accessories [7.79]; Traffic signs, ground mounted, Sheet Aluminum, (breakaway) Double post with all accessories [4.27]; Traffic signs, ground mounted, Sheet Alumenium, (breakaway) One road sign assembly mounted on two tubular post with all accessories; Labor [100 h]; Skilled Labor [100 h] | 24,697 | 19,757.6 | A3580 | 0.6 | L02 |
| CON-LEG101-LR-6510 |  | Retroreflective Plastic Cones [Local – 02 ] | 10d | 2027-10-27 | 2027-11-08 | CON-LEG101-PR-2060, CON-LEG101-LR-6710, CON-LEG101-PR-1630 |  |  |  |  | -69.25d | 0d | Retroreflective Plastic Cones; Labor [100 h]; Carpenter [50 h] |  |  | A3150 |  | L02 |
|  | 3 | **Local – 03** |  | 2026-07-08 | 2027-10-12 |  |  |  |  |  |  |  |  |  |  |  |  |  |
|  | 7 | **Concrete Curb** |  | 2026-10-04 | 2026-10-29 |  |  |  |  |  |  |  |  |  |  |  |  |  |
| CON-LEG101-LR-6220 |  | Installation of Precast Concrete Curb [Local – 03 ] | 21d | 2026-10-04 A | 2026-10-29 A | CON-LEG101-LR-5920, CON-LEG101-LR-2120, CON-LEG101-LR-10780, CON-LEG101-LR-7920, CON-LEG101-LR-8120, CON-LEG101-LR-2500, CON-LEG101-LR-9370, CON-LEG101-LR-6210, CON-LEG101-PR-1540 | 100% |  | 2027-07-10 | 2027-08-02 |  |  | Precast Concrete Kerb, Type K1-A [1348.04]; Precast Concrete Kerb, Type K4 [1058.25]; Precast Concrete Kerb, Type K1-B [554.76]; Precast Concrete Kerb, Type K NEW (Flushed Kerb) [1058.27]; Labor [100 h]; Skilled Labor [100 h] | 226,734.2 | 226,734.2 | A2780 |  | L03 |
|  | 1 | **Asphalt Wearing Course** |  | 2027-08-15 | 2027-08-21 |  |  |  |  |  |  |  |  |  |  |  |  |  |
| CON-LEG101-LR-6020 |  | Tack coat (RC2) [Local – 03 ] | 2d | 2027-08-15 | 2027-08-17 | CON-LEG101-LR-6220, CON-LEG101-LR-5920, CON-LEG101-LR-6110 |  |  |  |  | -47.05d | 0d | Bituminous concrete wearing course, (Grading I - Class A), including tack coat (RC2) according to drawings. [83.29]; Water Tanker [200 h]; Grader [48 h]; Truck [48 h]; Road Roller [48 h]; Asphalt Paver [60 h]; Labor [100 h]; Driver [100 h]; Eq. Operator [150 h] | 49,974 |  | A2490 |  | L03 |
| CON-LEG101-LR-6120 |  | Bituminous wearing course [Local – 03 ] | 3d | 2027-08-17 | 2027-08-21 | CON-LEG101-LR-6020, CON-LEG101-PR-1510, CON-LEG101-EN-3470 |  |  |  |  | -47.05d | 0d | Bituminous concrete wearing course, (Grading I - Class A), including tack coat (RC2) according to drawings. [194.35]; Water Tanker [48 h]; Truck [240 h]; Road Roller [240 h]; Asphalt Paver [60 h]; Labor [450 h]; Driver [300 h]; Eq. Operator [300 h] | 116,610 |  | A2600 |  | L03 |
|  | 3 | **Interlocking block roads/on-street parking** |  | 2026-10-27 | 2026-10-31 |  |  |  |  |  |  |  |  |  |  |  |  |  |
| CON-LEG101-LR-6420 |  | Interlocking block pavers for roads/on-street parking [Local – 03 ] | 21d | 2026-10-27 A | 2026-10-31 A | CON-LEG101-LR-6220, CON-LEG101-LR-6120, CON-LEG101-LR-5720, CON-LEG101-EN-3450 | 100% |  | 2027-08-24 | 2027-09-18 |  |  | Interlocking block pavers for roads/on-street parking [1292.1]; Labor [757.89 h]; Mason [200 h] | 103,368 | 103,368 | A3030 |  | L03 |
|  | 4 | **Interlocking block sidewalk/footpath** |  | 2026-10-19 | 2026-10-31 |  |  |  |  |  |  |  |  |  |  |  |  |  |
| CON-LEG101-LR-6320 |  | Interlocking block pavers for sidewalk/footpath [Local – 03 ] | 21d | 2026-10-19 A | 2026-10-31 A | CON-LEG101-LR-6220, CON-LEG101-LR-6420, CON-LEG101-PR-1570 | 100% |  | 2027-09-14 | 2027-10-10 |  |  | Interlocking block pavers for sidewalk/footpath [2587.54]; Labor [800 h]; Mason [400 h] | 181,127.8 | 181,127.8 | A2910 |  | L03 |
|  | 5 | **Pavement Markings** |  | 2027-08-28 | 2027-09-20 |  |  |  |  |  |  |  |  |  |  |  |  |  |
| CON-LEG101-LR-6620 |  | Pavement Markings (White Paint/Yellow Paint) [Local – 03 ] | 10d | 2027-08-28 | 2027-09-08 | CON-LEG101-PR-2070, CON-LEG101-LR-6220, CON-LEG101-LR-6120, CON-LEG101-PR-1600 |  |  |  |  | -42.05d | 0d | Retroreflective Thermoplastic white paint [136.01]; Retroreflective Thermoplastic yellow paint including Rumble strips [41.27]; Labor [233.33 h]; Skilled Labor [50 h] | 7,977.6 |  | A3310 |  | L03 |
| CON-LEG101-LR-6720 |  | Handicap ramp [Local – 03 ] | 10d | 2027-09-08 | 2027-09-20 | CON-LEG101-LR-6620, CON-LEG101-PR-2600 |  |  |  |  | -42.05d | 0d | Handicap ramp [5.44]; Labor [100 h]; Carpenter [50 h] | 8,160 |  | A3430 |  | L03 |
|  | 6 | **Traffic Signs** |  | 2026-07-08 | 2027-10-12 |  |  |  |  |  |  |  |  |  |  |  |  |  |
| CON-LEG101-LR-6820 |  | Installation of Traffic Signs [Local – 03 ] | 20d | 2026-07-08 A | 2027-10-12 | CON-LEG101-PR-2060, CON-LEG101-LR-6520, CON-LEG101-PR-1630 | 60% | 8d | 2027-08-19 | 2027-09-12 | -42.05d | 61.35d | Traffic signs, ground mounted, Sheet Aluminum, (breakaway)Single post, with all accessories [11.13]; Traffic signs, ground mounted, Sheet Aluminum, (breakaway) Double post with all accessories [6.1]; Traffic signs, ground mounted, Sheet Alumenium, (breakaway) One road sign assembly mounted on two tubular post with all accessories; Labor [100 h]; Skilled Labor [100 h] | 35,284 | 21,170.4 | A3590 | 0.3 | L03 |
| CON-LEG101-LR-6520 |  | Retroreflective Plastic Cones [Local – 03 ] | 10d | 2027-09-20 | 2027-10-03 | CON-LEG101-PR-2060, CON-LEG101-LR-6720, CON-LEG101-PR-1630 |  |  |  |  | -42.05d | 0d | Retroreflective Plastic Cones; Labor [100 h]; Carpenter [50 h] |  |  | A3160 |  | L03 |

| ID | WBS | Activity | Duration | Start | Finish | Predecessors | Complete | Remaining | Planned start | Planned finish | Total float | Free float | Resources | Cost | Actual cost | Mapping Sheet Activity ID | JEDDAH 1 - Area Name | % A |
| --- | --- | --- | --- | --- | --- | --- | --- | --- | --- | --- | --- | --- | --- | --- | --- | --- | --- | --- |
|  | 4 | **Local – 04** |  | 2027-10-03 | 2027-12-22 |  |  |  |  |  |  |  |  |  |  |  |  |  |
|  | 7 | **Concrete Curb** |  | 2027-10-03 | 2027-10-26 |  |  |  |  |  |  |  |  |  |  |  |  |  |
| CON-LEG101-LR-6230 |  | Installation of Precast Concrete Curb [Local – 04 ] | 21d | 2027-10-03 | 2027-10-26 | CON-LEG101-LR-5930, CON-LEG101-LR-2130, CON-LEG101-LR-10790, CON-LEG101-LR-7930, CON-LEG101-LR-8130, CON-LEG101-LR-2510, CON-LEG101-LR-9380, CON-LEG101-LR-6220, CON-LEG101-PR-1540 |  |  |  |  | -169d | 0d | Precast Concrete Kerb, Type K1-A [943.63]; Precast Concrete Kerb, Type K4 [740.79]; Precast Concrete Kerb, Type K1-B [388.33]; Precast Concrete Kerb, Type K NEW (Flushed Kerb) [740.79]; Labor [176.19 h]; Skilled Labor [100 h] | 158,714.75 |  | A2790 | L04 |  |
|  | 1 | **Asphalt Wearing Course** |  | 2027-10-27 | 2027-11-01 |  |  |  |  |  |  |  |  |  |  |  |  |  |
| CON-LEG101-LR-6030 |  | Tack coat (RC2) [Local – 04 ] | 2d | 2027-10-27 | 2027-10-28 | CON-LEG101-LR-6230, CON-LEG101-LR-5930, CON-LEG101-LR-6120 |  |  |  |  | -103.4d | 0d | Bituminous concrete wearing course, (Grading I - Class A), including tack coat (RC2) according to drawings. [83.29]; Water Tanker [20 h]; Grader [48 h]; Truck [20 h]; Road Roller [48 h]; Asphalt Paver [40 h]; Labor [100 h]; Driver [100 h]; Eq. Operator [150 h] | 49,974 |  | A2500 | L04 |  |
| CON-LEG101-LR-6130 |  | Bituminous wearing course [Local – 04 ] | 3d | 2027-10-30 | 2027-11-01 | CON-LEG101-LR-6030, CON-LEG101-PR-1510, CON-LEG101-EN-3470 |  |  |  |  | -103.4d | 0d | Bituminous concrete wearing course, (Grading I - Class A), including tack coat (RC2) according to drawings. [194.35]; Water Tanker [48 h]; Truck [100 h]; Road Roller [240 h]; Asphalt Paver [40 h]; Labor [450 h]; Driver [300 h]; Eq. Operator [600 h] | 116,610 |  | A2610 | L04 |  |
|  | 3 | **Interlocking block roads/on-street parking** |  | 2027-11-02 | 2027-11-23 |  |  |  |  |  |  |  |  |  |  |  |  |  |
| CON-LEG101-LR-6430 |  | Interlocking block pavers for roads/on-street parking [Local – 04 ] | 19d | 2027-11-02 | 2027-11-23 | CON-LEG101-LR-6230, CON-LEG101-LR-6130, CON-LEG101-LR-5730, CON-LEG101-EN-3450 |  |  |  |  | -97.4d | 0d | Interlocking block pavers for roads/on-street parking [904.47]; Labor [400 h]; Mason [200 h] | 72,357.6 |  | A3040 | L04 |  |
|  | 4 | **Interlocking block sidewalk/footpath** |  | 2027-11-24 | 2027-12-15 |  |  |  |  |  |  |  |  |  |  |  |  |  |
| CON-LEG101-LR-6330 |  | Interlocking block pavers for sidewalk/footpath [Local – 04 ] | 19d | 2027-11-24 | 2027-12-15 | CON-LEG101-LR-6230, CON-LEG101-LR-6430, CON-LEG101-PR-1570 |  |  |  |  | -97.4d | 6d | Interlocking block pavers for sidewalk/footpath [1811.28]; Labor [800 h]; Mason [400 h] | 126,789.6 |  | A2920 | L04 |  |
|  | 5 | **Pavement Markings** |  | 2027-11-02 | 2027-11-24 |  |  |  |  |  |  |  |  |  |  |  |  |  |
| CON-LEG101-LR-6630 |  | Pavement Markings (White Paint/Yellow Paint) [Local – 04 ] | 10d | 2027-11-02 | 2027-11-13 | CON-LEG101-PR-2070, CON-LEG101-LR-6130, CON-LEG101-LR-6230, CON-LEG101-LR-6130 FF, CON-LEG101-PR-1600 |  |  |  |  | -103.4d | 0d | Retroreflective Thermoplastic white paint [136.01]; Retroreflective Thermoplastic yellow paint including Rumble strips [41.27]; Labor [50 h]; Skilled Labor [50 h] | 7,977.6 |  | A3320 | L04 |  |
| CON-LEG101-LR-6730 |  | Handicap ramp [Local – 04 ] | 10d | 2027-11-14 | 2027-11-24 | CON-LEG101-LR-6630, CON-LEG101-PR-2600 |  |  |  |  | -103.4d | 0d | Handicap ramp [5.44]; Labor [100 h]; Carpenter [50 h] | 8,160 |  | A3440 | L04 |  |
|  | 6 | **Traffic Signs** |  | 2027-11-25 | 2027-12-22 |  |  |  |  |  |  |  |  |  |  |  |  |  |
| CON-LEG101-LR-6530 |  | Retroreflective Plastic Cones [Local – 04 ] | 10d | 2027-11-25 | 2027-12-06 | CON-LEG101-PR-2060, CON-LEG101-LR-6730, CON-LEG101-PR-1630 |  |  |  |  | -103.4d | 0d | Retroreflective Plastic Cones; Labor [100 h]; Carpenter [50 h] |  |  | A3170 | L04 |  |
| CON-LEG101-LR-6830 |  | Installation of Traffic Signs [Local – 04 ] | 14d | 2027-12-07 | 2027-12-22 | CON-LEG101-PR-2060, CON-LEG101-LR-6530, CON-LEG101-PR-1630 |  |  |  |  | -103.4d | 0d | Traffic signs, ground mounted, Sheet Aluminum, (breakaway)Single post, with all accessories [7.79]; Traffic signs, ground mounted, Sheet Aluminum, (breakaway) Double post with all accessories [4.24]; Traffic signs, ground mounted, Sheet Alumenium, (breakaway) One road sign assembly mounted on two tubular post with all accessories; Labor [100 h]; Skilled Labor [100 h] | 24,622 |  | A3600 | L04 |  |
|  | 5 | **Local – 05** |  | 2026-05-24 | 2027-12-05 |  |  |  |  |  |  |  |  |  |  |  |  |  |
|  | 7 | **Concrete Curb** |  | 2026-05-24 | 2026-06-28 |  |  |  |  |  |  |  |  |  |  |  |  |  |
| CON-LEG101-LR-6240 |  | Installation of Precast Concrete Curb [Local – 05 ] | 16d | 2026-05-24 A | 2026-06-28 A | CON-LEG101-LR-5940, CON-LEG101-LR-2140, CON-LEG101-LR-10800, CON-LEG101-LR-7940, CON-LEG101-LR-8140, CON-LEG101-LR-2520, CON-LEG101-LR-9390, CON-LEG101-LR-6230, CON-LEG101-PR-1540 | 100% |  | 2027-06-22 | 2027-07-10 |  |  | Precast Concrete Kerb, Type K1-A [1617.65]; Precast Concrete Kerb, Type K4 [1269.92]; Precast Concrete Kerb, Type K1-B [665.71]; Precast Concrete Kerb, Type K NEW (Flushed Kerb) [1269.92]; Labor [400 h]; Skilled Labor [200 h] | 272,081.85 | 272,081.85 | A2800 | L05 | 1 |
|  | 1 | **Asphalt Wearing Course** |  | 2026-10-03 | 2027-11-02 |  |  |  |  |  |  |  |  |  |  |  |  |  |
| CON-LEG101-LR-6040 |  | Tack coat (RC2) [Local – 05 ] | 2d | 2026-10-03 A | 2027-11-02 | CON-LEG101-LR-6240, CON-LEG101-LR-5940, CON-LEG101-LR-6130 | 85% | 0.3d | 2027-09-28 | 2027-09-29 | -87.9d | 0d | Bituminous concrete wearing course, (Grading I - Class A), including tack coat (RC2) according to drawings. [130.89]; Water Tanker [20 h]; Grader [48 h]; Truck [20 h]; Road Roller [48 h]; Asphalt Paver [40 h]; Labor [50 h]; Driver [100 h]; Eq. Operator [150 h] | 78,534 | 66,753.9 | A2510 | L05 |  |
| CON-LEG101-LR-6140 |  | Bituminous wearing course [Local – 05 ] | 3d | 2026-10-03 A | 2027-11-02 | CON-LEG101-LR-6040, CON-LEG101-PR-1510, CON-LEG101-EN-3470 | 85% | 0.45d | 2027-09-30 | 2027-10-03 | -87.9d | 0d | Bituminous concrete wearing course, (Grading I - Class A), including tack coat (RC2) according to drawings. [305.41]; Water Tanker [48 h]; Truck [100 h]; Road Roller [240 h]; Asphalt Paver [40 h]; Labor [450 h]; Driver [300 h]; Eq. Operator [600 h] | 183,246 | 155,759.1 | A2620 | L05 |  |
|  | 3 | **Interlocking block roads/on-street parking** |  | 2026-07-13 | 2026-07-29 |  |  |  |  |  |  |  |  |  |  |  |  |  |
| CON-LEG101-LR-6440 |  | Interlocking block pavers for roads/on-street parking [Local – 05 ] | 18d | 2026-07-13 A | 2026-07-29 A | CON-LEG101-LR-6240, CON-LEG101-LR-6140, CON-LEG101-LR-5740, CON-LEG101-EN-3450 | 100% |  | 2027-08-12 | 2027-09-02 |  |  | Interlocking block pavers for roads/on-street parking [1550.51]; Labor [800 h]; Mason [400 h] | 124,040.8 | 124,040.8 | A3050 | L05 | 1 |

| ID | WBS | Activity | Duration | Start | Finish | Predecessors | Complete | Remaining | Planned start | Planned finish | Total float | Free float | Resources | Cost | Actual cost | Mapping Sheet Activity ID | % A | JEDDAH 1 - Area Name |
| --- | --- | --- | --- | --- | --- | --- | --- | --- | --- | --- | --- | --- | --- | --- | --- | --- | --- | --- |
|  | 4 | **Interlocking block sidewalk/footpath** |  | 2026-07-13 | 2026-07-29 |  |  |  |  |  |  |  |  |  |  |  |  |  |
| CON-LEG101-LR-6340 |  | Interlocking block pavers for sidewalk/footpath [Local – 05 ] | 19d | 2026-07-13 A | 2026-07-29 A | CON-LEG101-LR-6240, CON-LEG101-LR-6440, CON-LEG101-PR-1570 | 100% |  | 2027-09-02 | 2027-09-26 |  |  | Interlocking block pavers for sidewalk/footpath [3105.05]; Labor [1200 h]; Mason [600 h] | 217,353.5 | 217,353.5 | A2930 | 1 | L05 |
|  | 5 | **Pavement Markings** |  | 2027-11-02 | 2027-11-25 |  |  |  |  |  |  |  |  |  |  |  |  |  |
| CON-LEG101-LR-6640 |  | Pavement Markings (White Paint/Yellow Paint) [Local – 05 ] | 10d | 2027-11-02 | 2027-11-14 | CON-LEG101-PR-2070, CON-LEG101-LR-6140, CON-LEG101-LR-6240, CON-LEG101-LR-6140 FF, CON-LEG101-PR-1600 |  |  |  |  | -87.9d | 0d | Retroreflective Thermoplastic white paint [213.73]; Retroreflective Thermoplastic yellow paint including Rumble strips [64.85]; Labor [50 h]; Skilled Labor [50 h] | 12,536.1 |  | A3330 |  | L05 |
| CON-LEG101-LR-6740 |  | Handicap ramp [Local – 05 ] | 10d | 2027-11-14 | 2027-11-25 | CON-LEG101-LR-6640, CON-LEG101-PR-2600 |  |  |  |  | -87.9d | 0d | Handicap ramp [8.55]; Labor [100 h]; Carpenter [50 h] | 12,825 |  | A3450 |  | L05 |
|  | 6 | **Traffic Signs** |  | 2026-07-09 | 2027-12-05 |  |  |  |  |  |  |  |  |  |  |  |  |  |
| CON-LEG101-LR-6840 |  | Installation of Traffic Signs [Local – 05 ] | 11d | 2026-07-09 A | 2027-12-05 | CON-LEG101-PR-2060, CON-LEG101-LR-6540, CON-LEG101-PR-1630 | 75% | 2.75d | 2027-08-25 | 2027-09-07 | -87.9d | 15.5d | Traffic signs, ground mounted, Sheet Aluminum, (breakaway)Single post, with all accessories [12.23]; Traffic signs, ground mounted, Sheet Aluminum, (breakaway) Double post with all accessories [6.71]; Traffic signs, ground mounted, Sheet Alumenium, (breakaway) One road sign assembly mounted on two tubular post with all accessories; Labor [150 h]; Skilled Labor [150 h] | 38,789 | 29,091.75 | A3610 | 0.75 | L05 |
| CON-LEG101-LR-6540 |  | Retroreflective Plastic Cones [Local – 05 ] | 5d | 2027-11-25 | 2027-12-01 | CON-LEG101-PR-2060, CON-LEG101-LR-6740, CON-LEG101-PR-1630 |  |  |  |  | -87.9d | 0d | Retroreflective Plastic Cones; Labor [100 h]; Carpenter [50 h] |  |  | A3180 |  | L05 |
|  | 6 | **Local – 06** |  | 2026-06-10 | 2027-12-05 |  |  |  |  |  |  |  |  |  |  |  |  |  |
|  | 7 | **Concrete Curb** |  | 2026-06-10 | 2026-07-15 |  |  |  |  |  |  |  |  |  |  |  |  |  |
| CON-LEG101-LR-6250 |  | Installation of Precast Concrete Curb [Local – 06 ] | 21d | 2026-06-10 A | 2026-07-15 A | CON-LEG101-LR-5950, CON-LEG101-LR-2150, CON-LEG101-LR-10810, CON-LEG101-LR-7950, CON-LEG101-LR-8050, CON-LEG101-LR-8150, CON-LEG101-LR-2530, CON-LEG101-LR-9400, CON-LEG101-LR-6240, CON-LEG101-PR-1540 | 100% |  | 2027-07-03 | 2027-07-27 |  |  | Precast Concrete Kerb, Type K1-A [1078.43]; Precast Concrete Kerb, Type K4 [846.61]; Precast Concrete Kerb, Type K1-B [443.81]; Precast Concrete Kerb, Type K NEW (Flushed Kerb) [846.61]; Labor [200 h]; Skilled Labor [100 h] | 181,387.55 | 181,387.55 | A2810 | 1 | L06 |
|  | 1 | **Asphalt Wearing Course** |  | 2026-10-06 | 2026-11-01 |  |  |  |  |  |  |  |  |  |  |  |  |  |
| CON-LEG101-LR-6050 |  | Tack coat (RC2) [Local – 06 ] | 3d | 2026-10-06 A | 2026-11-01 A | CON-LEG101-LR-6250, CON-LEG101-LR-5950, CON-LEG101-LR-6140 | 100% |  | 2027-10-07 | 2027-10-10 |  |  | Bituminous concrete wearing course, (Grading I - Class A), including tack coat (RC2) according to drawings. [95.19]; Water Tanker [20 h]; Grader [48 h]; Truck [20 h]; Road Roller [48 h]; Asphalt Paver [40 h]; Labor [50 h]; Driver [100 h]; Eq. Operator [150 h] | 57,114 | 57,114 | A2520 |  | L06 |
| CON-LEG101-LR-6150 |  | Bituminous wearing course [Local – 06 ] | 2d | 2026-10-06 A | 2026-11-01 A | CON-LEG101-LR-6050, CON-LEG101-PR-1510, CON-LEG101-EN-3470 | 100% |  | 2027-10-11 | 2027-10-12 |  |  | Bituminous concrete wearing course, (Grading I - Class A), including tack coat (RC2) according to drawings. [222.12]; Water Tanker [48 h]; Truck [100 h]; Road Roller [240 h]; Asphalt Paver [40 h]; Labor [450 h]; Driver [300 h]; Eq. Operator [600 h] | 133,272 | 133,272 | A2630 |  | L06 |
|  | 3 | **Interlocking block roads/on-street parking** |  | 2026-07-19 | 2026-08-20 |  |  |  |  |  |  |  |  |  |  |  |  |  |
| CON-LEG101-LR-6450 |  | Interlocking block pavers for roads/on-street parking [Local – 06 ] | 19d | 2026-07-19 A | 2026-08-20 A | CON-LEG101-LR-6250, CON-LEG101-LR-6150, CON-LEG101-LR-5750, CON-LEG101-EN-3450 | 100% |  | 2027-08-02 | 2027-08-24 |  |  | Interlocking block pavers for roads/on-street parking [1033.68]; Labor [400 h]; Mason [200 h] | 82,694.4 | 82,694.4 | A3060 | 1 | L06 |
|  | 4 | **Interlocking block sidewalk/footpath** |  | 2026-07-19 | 2026-08-20 |  |  |  |  |  |  |  |  |  |  |  |  |  |
| CON-LEG101-LR-6350 |  | Interlocking block pavers for sidewalk/footpath [Local – 06 ] | 19d | 2026-07-19 A | 2026-08-20 A | CON-LEG101-LR-6250, CON-LEG101-LR-6450, CON-LEG101-PR-1570 | 100% |  | 2027-08-24 | 2027-09-15 |  |  | Interlocking block pavers for sidewalk/footpath [2070.03]; Labor [800 h]; Mason [400 h] | 144,902.1 | 144,902.1 | A2940 | 1 | L06 |
|  | 5 | **Pavement Markings** |  | 2027-11-02 | 2027-11-25 |  |  |  |  |  |  |  |  |  |  |  |  |  |
| CON-LEG101-LR-6650 |  | Pavement Markings (White Paint/Yellow Paint) [Local – 06 ] | 10d | 2027-11-02 | 2027-11-14 | CON-LEG101-PR-2070, CON-LEG101-LR-6150, CON-LEG101-LR-6250, CON-LEG101-PR-1600 |  |  |  |  | -87.9d | 0d | Retroreflective Thermoplastic white paint [155.44]; Retroreflective Thermoplastic yellow paint including Rumble strips [47.17]; Labor [50 h]; Skilled Labor [50 h] | 9,117.45 |  | A3340 |  | L06 |
| CON-LEG101-LR-6750 |  | Handicap ramp [Local – 06 ] | 10d | 2027-11-14 | 2027-11-25 | CON-LEG101-LR-6650, CON-LEG101-PR-2600 |  |  |  |  | -87.9d | 0d | Handicap ramp [6.22]; Labor [100 h]; Carpenter [50 h] | 9,330 |  | A3460 |  | L06 |
|  | 6 | **Traffic Signs** |  | 2026-07-11 | 2027-12-05 |  |  |  |  |  |  |  |  |  |  |  |  |  |
| CON-LEG101-LR-6850 |  | Installation of Traffic Signs [Local – 06 ] | 15d | 2026-07-11 A | 2027-12-05 | CON-LEG101-PR-2060, CON-LEG101-LR-6550, CON-LEG101-PR-1630 | 75% | 3.75d | 2027-08-30 | 2027-09-16 | -87.9d | 15.5d | Traffic signs, ground mounted, Sheet Aluminum, (breakaway)Single post, with all accessories [8.9]; Traffic signs, ground mounted, Sheet Aluminum, (breakaway) Double post with all accessories [4.88]; Traffic signs, ground mounted, Sheet Alumenium, (breakaway) One road sign assembly mounted on two tubular post with all accessories; Labor [100 h]; Skilled Labor [100 h] | 28,220 | 21,165 | A3620 | 0.75 | L06 |
| CON-LEG101-LR-6550 |  | Retroreflective Plastic Cones [Local – 06 ] | 4d | 2027-11-25 | 2027-11-30 | CON-LEG101-PR-2060, CON-LEG101-LR-6750, CON-LEG101-PR-1630 |  |  |  |  | -87.9d | 0d | Retroreflective Plastic Cones; Labor [100 h]; Carpenter [50 h] |  |  | A3190 |  | L06 |

| ID | WBS | Activity | Duration | Start | Finish | Predecessors | Complete | Remaining | Planned start | Planned finish | Total float | Free float | Resources | Cost | Actual cost | Mapping Sheet Activity ID | % A | JEDDAH 1 - Area Name |
| --- | --- | --- | --- | --- | --- | --- | --- | --- | --- | --- | --- | --- | --- | --- | --- | --- | --- | --- |
|  | 7 | **Local – 07** |  | 2026-07-05 | 2027-11-15 |  |  |  |  |  |  |  |  |  |  |  |  |  |
|  | 7 | **Concrete Curb** |  | 2026-07-05 | 2026-07-20 |  |  |  |  |  |  |  |  |  |  |  |  |  |
| CON-LEG101-LR-6260 |  | Installation of Precast Concrete Curb [Local – 07 ] | 8d | 2026-07-05 A | 2026-07-20 A | CON-LEG101-LR-5960, CON-LEG101-LR-2160, CON-LEG101-LR-10820, CON-LEG101-LR-7960, CON-LEG101-LR-8060, CON-LEG101-LR-8160, CON-LEG101-LR-2540, CON-LEG101-LR-9410, CON-LEG101-LR-6250, CON-LEG101-PR-1540 | 100% |  | 2027-07-29 | 2027-08-08 |  |  | Precast Concrete Kerb, Type K1-A [269.61]; Precast Concrete Kerb, Type K4 [211.65]; Precast Concrete Kerb, Type K1-B [110.95]; Precast Concrete Kerb, Type K NEW (Flushed Kerb) [211.65]; Labor [225 h]; Skilled Labor [100 h] | 45,346.65 | 45,346.65 | A2820 | 1 | L07 |
|  | 1 | **Asphalt Wearing Course** |  | 2026-10-01 | 2027-10-28 |  |  |  |  |  |  |  |  |  |  |  |  |  |
| CON-LEG101-LR-6060 |  | Tack coat (RC2) [Local – 07 ] | 6d | 2026-10-01 A | 2027-10-27 | CON-LEG101-LR-6260, CON-LEG101-LR-5960 | 90% | 0.6d | 2027-09-21 | 2027-09-28 | -71.1d | 0d | Bituminous concrete wearing course, (Grading I - Class A), including tack coat (RC2) according to drawings. [23.83]; Water Tanker [20 h]; Grader [48 h]; Truck [20 h]; Road Roller [48 h]; Asphalt Paver [40 h]; Labor [50 h]; Driver [100 h]; Eq. Operator [150 h] | 14,298 | 12,868.2 | A2530 |  | L07 |
| CON-LEG101-LR-6160 |  | Bituminous wearing course [Local – 07 ] | 6d | 2026-10-01 A | 2027-10-28 | CON-LEG101-LR-6060, CON-LEG101-PR-1510, CON-LEG101-EN-3470 | 90% | 0.6d | 2027-09-29 | 2027-10-05 | -71.1d | 0d | Bituminous concrete wearing course, (Grading I - Class A), including tack coat (RC2) according to drawings. [55.53]; Water Tanker [48 h]; Truck [100 h]; Road Roller [240 h]; Asphalt Paver [40 h]; Labor [450 h]; Driver [300 h]; Eq. Operator [600 h] | 33,318 | 29,986.2 | A2640 |  | L07 |
|  | 3 | **Interlocking block roads/on-street parking** |  | 2026-07-23 | 2026-08-02 |  |  |  |  |  |  |  |  |  |  |  |  |  |
| CON-LEG101-LR-6460 |  | Interlocking block pavers for roads/on-street parking [Local – 07 ] | 15d | 2026-07-23 A | 2026-08-02 A | CON-LEG101-LR-6260, CON-LEG101-LR-6160, CON-LEG101-LR-5760, CON-LEG101-EN-3450 | 100% |  | 2027-07-28 | 2027-08-14 |  |  | Interlocking block pavers for roads/on-street parking [258.42]; Labor [400 h]; Mason [200 h] | 20,673.6 | 20,673.6 | A3070 | 1 | L07 |
|  | 4 | **Interlocking block sidewalk/footpath** |  | 2026-07-23 | 2026-08-02 |  |  |  |  |  |  |  |  |  |  |  |  |  |
| CON-LEG101-LR-6360 |  | Interlocking block pavers for sidewalk/footpath [Local – 07 ] | 15d | 2026-07-23 A | 2026-08-02 A | CON-LEG101-LR-6260, CON-LEG101-LR-6460, CON-LEG101-PR-1570 | 100% |  | 2027-08-15 | 2027-08-31 |  |  | Interlocking block pavers for sidewalk/footpath [517.51]; Labor [400 h]; Mason [200 h] | 36,225.7 | 36,225.7 | A2950 | 1 | L07 |
|  | 5 | **Pavement Markings** |  | 2027-10-28 | 2027-11-07 |  |  |  |  |  |  |  |  |  |  |  |  |  |
| CON-LEG101-LR-6660 |  | Pavement Markings (White Paint/Yellow Paint) [Local – 07 ] | 4d | 2027-10-28 | 2027-11-02 | CON-LEG101-PR-2070, CON-LEG101-LR-6160, CON-LEG101-LR-6260, CON-LEG101-LR-6160 FF, CON-LEG101-PR-1600 |  |  |  |  | -71.1d | 0d | Retroreflective Thermoplastic white paint [38.86]; Retroreflective Thermoplastic yellow paint including Rumble strips [11.79]; Labor [50 h]; Skilled Labor [50 h] | 2,279.25 |  | A3350 |  | L07 |
| CON-LEG101-LR-6760 |  | Handicap ramp [Local – 07 ] | 4d | 2027-11-02 | 2027-11-07 | CON-LEG101-LR-6660, CON-LEG101-PR-2600 |  |  |  |  | -71.1d | 0d | Handicap ramp [1.55]; Labor [100 h]; Carpenter [50 h] | 2,325 |  | A3470 |  | L07 |
|  | 6 | **Traffic Signs** |  | 2026-07-12 | 2027-11-15 |  |  |  |  |  |  |  |  |  |  |  |  |  |
| CON-LEG101-LR-6860 |  | Installation of Traffic Signs [Local – 07 ] | 14d | 2026-07-12 A | 2027-11-15 | CON-LEG101-PR-2060, CON-LEG101-LR-6560, CON-LEG101-PR-1630 | 75% | 3.5d | 2027-08-11 | 2027-08-28 | -71.1d | 32.3d | Traffic signs, ground mounted, Sheet Aluminum, (breakaway)Single post, with all accessories [2.22]; Traffic signs, ground mounted, Sheet Aluminum, (breakaway) Double post with all accessories [1.22]; Traffic signs, ground mounted, Sheet Alumenium, (breakaway) One road sign assembly mounted on two tubular post with all accessories; Labor [50 h]; Skilled Labor [50 h] | 7,046 | 5,284.5 | A3630 | 0.6 | L07 |
| CON-LEG101-LR-6560 |  | Retroreflective Plastic Cones [Local – 07 ] | 4d | 2027-11-07 | 2027-11-11 | CON-LEG101-PR-2060, CON-LEG101-LR-6760, CON-LEG101-PR-1630 |  |  |  |  | -71.1d | 0d | Retroreflective Plastic Cones; Labor [100 h]; Carpenter [50 h] |  |  | A3200 |  | L07 |
|  | 8 | **Local – 08** |  | 2026-07-13 | 2027-11-16 |  |  |  |  |  |  |  |  |  |  |  |  |  |
|  | 7 | **Concrete Curb** |  | 2026-07-23 | 2027-10-30 |  |  |  |  |  |  |  |  |  |  |  |  |  |
| CON-LEG101-LR-6270 |  | Installation of Precast Concrete Curb [Local – 08 ] | 14d | 2026-07-23 A | 2027-10-30 | CON-LEG101-LR-5970, CON-LEG101-LR-2170, CON-LEG101-LR-10830, CON-LEG101-LR-7970, CON-LEG101-LR-8070, CON-LEG101-LR-8170, CON-LEG101-LR-2550, CON-LEG101-LR-9420, CON-LEG101-LR-8320, CON-LEG101-LR-6260, CON-LEG101-PR-1540 | 80% | 2.8d | 2027-07-14 | 2027-07-29 | -72d | 0d | Precast Concrete Kerb, Type K1-A [1213.24]; Precast Concrete Kerb, Type K4 [952.44]; Precast Concrete Kerb, Type K1-B [499.28]; Precast Concrete Kerb, Type K NEW (Flushed Kerb) [952.44]; Labor [100 h]; Skilled Labor [100 h] | 204,061.4 | 163,249.12 | A2830 | 1 | L08 |
|  | 1 | **Asphalt Wearing Course** |  | 2026-10-24 | 2026-10-24 |  |  |  |  |  |  |  |  |  |  |  |  |  |
| CON-LEG101-LR-6070 |  | Tack coat (RC2) [Local – 08 ] | 2d | 2026-10-24 A | 2026-10-24 A | CON-LEG101-LR-6270, CON-LEG101-LR-5970 | 100% |  | 2027-10-13 | 2027-10-14 |  |  | Bituminous concrete wearing course, (Grading I - Class A), including tack coat (RC2) according to drawings. [118.99]; Water Tanker [20 h]; Grader [48 h]; Truck [20 h]; Road Roller [48 h]; Asphalt Paver [40 h]; Labor [50 h]; Driver [100 h]; Eq. Operator [150 h] | 71,394 | 71,394 | A2540 |  | L08 |
| CON-LEG101-LR-6170 |  | Bituminous wearing course [Local – 08 ] | 3d | 2026-10-24 A | 2026-10-24 A | CON-LEG101-LR-6070, CON-LEG101-PR-1510, CON-LEG101-EN-3470 | 100% |  | 2027-10-16 | 2027-10-18 |  |  | Bituminous concrete wearing course, (Grading I - Class A), including tack coat (RC2) according to drawings. [194.35]; Water Tanker [48 h]; Truck [100 h]; Road Roller [240 h]; Asphalt Paver [40 h]; Labor [450 h]; Driver [300 h]; Eq. Operator [600 h] | 116,610 | 116,610 | A2650 |  | L08 |
|  | 3 | **Interlocking block roads/on-street parking** |  | 2026-09-12 | 2026-09-16 |  |  |  |  |  |  |  |  |  |  |  |  |  |
| CON-LEG101-LR-6470 |  | Interlocking block pavers for roads/on-street parking [Local – 08 ] | 13d | 2026-09-12 A | 2026-09-16 A | CON-LEG101-LR-6270, CON-LEG101-LR-6170, CON-LEG101-LR-5770, CON-LEG101-EN-3450 | 100% |  | 2027-09-07 | 2027-09-21 |  |  | Interlocking block pavers for roads/on-street parking [1162.89]; Labor [400 h]; Mason [200 h] | 93,031.2 | 93,031.2 | A3080 | 0.5 | L08 |

| ID | WBS | Activity | Duration | Start | Finish | Predecessors | Complete | Remaining | Planned start | Planned finish | Total float | Free float | Resources | Cost | Actual cost | Mapping Sheet Activity ID | % A | JEDDAH 1 - Area Name |
| --- | --- | --- | --- | --- | --- | --- | --- | --- | --- | --- | --- | --- | --- | --- | --- | --- | --- | --- |
|  | 4 | **Interlocking block sidewalk/footpath** |  | 2026-09-13 | 2027-11-07 |  |  |  |  |  |  |  |  |  |  |  |  |  |
| CON-LEG101-LR-6370 |  | Interlocking block pavers for sidewalk/footpath [Local – 08 ] | 21d | 2026-09-13 A | 2027-11-07 | CON-LEG101-LR-6270, CON-LEG101-LR-6470, CON-LEG101-PR-1570 | 70% | 6.3d | 2027-09-22 | 2027-10-17 | -63.5d | 39.9d | Interlocking block pavers for sidewalk/footpath [2328.79]; Labor [400 h]; Mason [200 h] | 163,015.3 | 114,110.71 | A2960 | 0.5 | L08 |
|  | 5 | **Pavement Markings** |  | 2027-10-30 | 2027-11-08 |  |  |  |  |  |  |  |  |  |  |  |  |  |
| CON-LEG101-LR-6670 |  | Pavement Markings (White Paint/Yellow Paint) [Local – 08 ] | 4d | 2027-10-30 | 2027-11-03 | CON-LEG101-LR-6170, CON-LEG101-LR-6270, CON-LEG101-PR-1600 |  |  |  |  | -72d | 0d | Retroreflective Thermoplastic white paint [194.3]; Retroreflective Thermoplastic yellow paint including Rumble strips [58.97]; Labor [50 h]; Skilled Labor [50 h] | 11,397.15 |  | A3360 |  | L08 |
| CON-LEG101-LR-6770 |  | Handicap ramp [Local – 08 ] | 4d | 2027-11-03 | 2027-11-08 | CON-LEG101-LR-6670, CON-LEG101-PR-2600 |  |  |  |  | -72d | 0d | Handicap ramp [7.77]; Labor [100 h]; Carpenter [50 h] | 11,655 |  | A3480 |  | L08 |
|  | 6 | **Traffic Signs** |  | 2026-07-13 | 2027-11-16 |  |  |  |  |  |  |  |  |  |  |  |  |  |
| CON-LEG101-LR-6870 |  | Installation of Traffic Signs [Local – 08 ] | 14d | 2026-07-13 A | 2027-11-16 | CON-LEG101-PR-2060, CON-LEG101-LR-6570, CON-LEG101-PR-1630 | 80% | 2.8d | 2027-08-19 | 2027-09-05 | -72d | 31.4d | Traffic signs, ground mounted, Sheet Aluminum, (breakaway)Single post, with all accessories [11.12]; Traffic signs, ground mounted, Sheet Aluminum, (breakaway) Double post with all accessories [6.1]; Traffic signs, ground mounted, Sheet Alumenium, (breakaway) One road sign assembly mounted on two tubular post with all accessories; Labor [50 h]; Skilled Labor [50 h] | 35,266 | 28,212.8 | A3640 | 0.2 | L08 |
| CON-LEG101-LR-6570 |  | Retroreflective Plastic Cones [Local – 08 ] | 4d | 2027-11-08 | 2027-11-13 | CON-LEG101-LR-6770, CON-LEG101-PR-1630 |  |  |  |  | -72d | 0d | Retroreflective Plastic Cones; Labor [100 h]; Carpenter [50 h] |  |  | A3210 |  | L08 |
|  | 5 | **Fence and Gate** |  | 2025-12-10 | 2027-12-11 |  |  |  |  |  |  |  |  |  |  |  |  |  |
|  | 1 | **Fence and Gate Segment -01 (From 0+000 to 0+671)** |  | 2025-12-10 | 2027-03-06 |  |  |  |  |  |  |  |  |  |  |  |  |  |
|  | 1 | **Fence** |  | 2025-12-10 | 2027-03-06 |  |  |  |  |  |  |  |  |  |  |  |  |  |
| CON-LEG101-FG-1000 |  | Excavation for Fences [Fence and Gate Segment -01] | 10d | 2025-12-10 A | 2026-11-08 | CON-LEG101-SD-1000, CON-LEG101-SD-1010, CON-LEG101-SD-1030, CON-LEG101-EN-3410, CON-LEG101-EN-3420, CON-LEG101-EN-3430, CON-LEG101-EN-3440 | 85% | 4d | 2026-02-07 | 2026-02-17 | 11.68d | 0d | Excavation for Roadway, fences and bridge, cuttings including dump locations (all types of soil) [1970.6]; Loader [240 h]; Water Tanker [240 h]; Grader [240 h]; Truck [240 h]; Road Roller [240 h]; Labor [1500 h]; Driver [3000 h]; Eq. Operator [4500 h] | 3,941.2 | 3,350.02 | A1210 | 0.85 | Fence |
| CON-LEG101-FG-1100 |  | Lean concrete for Foundation [Fence and Gate Segment -01] | 4d | 2025-12-21 A | 2026-11-12 | CON-LEG101-FG-1000, CON-LEG101-EN-3450, CON-LEG101-EN-3460, CON-LEG101-PR-1430 | 20% | 3.4d | 2026-01-26 | 2026-01-29 | 11.68d | 0d | "Lean concrete [41.81]; Truck [48 h]; Bucket [48 h]; Labor [1500 h]; Driver [300 h]; Eq. Operator [300 h]; Carpenter [300 h]; Mason [300 h] | 18,814 | 3,762.9 | A15930 | 0.2 | Fence |
| CON-LEG101-FG-1150 |  | Reinforced concrete Structure [Fence and Gate Segment -01] | 20d | 2025-12-23 A | 2026-12-03 | CON-LEG101-PR-1410, CON-LEG101-FG-1100 | 20% | 18.4d | 2026-02-02 | 2026-02-26 | 11.68d | 0d | Isolated footings [86.3]; Columns [30.15]; Truck [48 h]; Bucket [48 h]; Labor [1000 h]; Driver [200 h]; Eq. Operator [200 h]; Carpenter [200 h]; Steel Fixer; Mason [200 h] | 189,335 | 37,867 | A16060 | 0.2 | Fence |
| CON-LEG101-FG-1200 |  | Spraying of bituminous paint waterproofing for R.C foundation [Fence and Gate Segment -01] | 10d | 2026-12-03 | 2026-12-15 | CON-LEG101-FG-1150, CON-LEG101-PR-1460 |  |  |  |  | 11.68d | 0d | "Supply and install cold applied bituminous paint waterproofing for R.C foundation and, as per drawings and specs section: [2617.02]; Labor [200 h]; Mason [400 h] | 39,255.3 |  | A16140 |  | Fence |
| CON-LEG101-FG-1260 |  | Embankments to the Fences [Fence and Gate Segment -01] | 8d | 2026-12-15 | 2026-12-24 | CON-LEG101-FG-1150, CON-LEG101-FG-1200, CON-LEG101-EN-3410, CON-LEG101-EN-3420, CON-LEG101-EN-3430, CON-LEG101-EN-3440 |  |  |  |  | 11.68d | 0d | Embankments to the roads , fences and bridge. [1372.56]; Excavator [96 h]; Bulldozer [96 h]; Water Tanker [96 h]; Grader [96 h]; Truck [96 h]; Bucket [96 h]; Compactor [96 h]; Labor [400 h]; Driver [400 h]; Eq. Operator [1000 h] | 41,176.8 |  | A1630 |  | Fence |
| CON-LEG101-FG-1050 |  | Concrete Works for Ground Beam for Fences [Fence and Gate Segment -01] | 20d | 2026-12-24 | 2027-01-17 | CON-LEG101-FG-1260, CON-LEG101-EN-3410, CON-LEG101-EN-3420, CON-LEG101-EN-3430, CON-LEG101-EN-3440 |  |  |  |  | 11.68d | 0d | Grade beams [125.03]; Loader [96 h]; Water Tanker [96 h]; Grader [96 h]; Truck [96 h]; Road Roller [96 h]; Labor [200 h]; Driver [400 h]; Eq. Operator [600 h]; Carpenter; Steel Fixer | 200,048 |  | A1420 |  | Fence |
| CON-LEG101-FG-1420 |  | Plster Works for Fences [Fence and Gate Segment -01] | 12d | 2027-01-17 | 2027-01-31 | CON-LEG101-FG-1050, CON-LEG101-EN-3410, CON-LEG101-EN-3420, CON-LEG101-EN-3430, CON-LEG101-EN-3440 |  |  |  |  | 11.68d | 0d | "PAINT ON CEMENT PLASTER [272.15]; Excavator [96 h]; Bulldozer [96 h]; Water Tanker [96 h]; Grader [96 h]; Truck [96 h]; Bucket [96 h]; Compactor [96 h]; Labor [200 h]; Driver [200 h]; Eq. Operator [500 h] | 16,329 |  | A1840 |  | Fence |
| CON-LEG101-FG-1280 |  | Installation of Metal Fence [Fence and Gate Segment -01] | 14d | 2027-01-31 | 2027-02-21 | CON-LEG101-PR-2080, CON-LEG101-FG-1420, CON-LEG101-FG-1200, CON-LEG101-PR-2020 |  |  |  |  | 11.68d | 0d | "METAL FENCE [449.7]; Excavator [96 h]; Bucket [48 h]; Labor [100 h]; Eq. Operator [150 h]; Steel Fixer [100 h] | 584,610 |  | A16350 |  | Fence |
| CON-LEG101-FG-1340 |  | Paint On Cement Plaster [Fence and Gate Segment -01] | 10d | 2027-02-21 | 2027-03-06 | CON-LEG101-PR-2940, CON-LEG101-FG-1280 FF, CON-LEG101-FG-1280, CON-LEG101-PR-2630 |  |  |  |  | 11.68d | 0d | "PAINT ON CEMENT PLASTER [272.15]; Labor [75 h]; Skilled Labor [300 h] | 16,329 |  | A16430 |  | Fence |
|  | 2 | **Fence and Gate Segment -02 (From 0+671 to 1+342)** |  | 2026-03-25 | 2027-05-04 |  |  |  |  |  |  |  |  |  |  |  |  |  |
|  | 1 | **Fence** |  | 2026-03-25 | 2027-05-04 |  |  |  |  |  |  |  |  |  |  |  |  |  |
| CON-LEG101-FG-1010 |  | Excavation for Fences [Fence and Gate Segment -02] | 10d | 2026-03-25 A | 2027-03-09 | CON-LEG101-SD-1000, CON-LEG101-SD-1010, CON-LEG101-SD-1020, CON-LEG101-SD-1030, CON-LEG101-FG-1340, CON-LEG101-EN-3410, CON-LEG101-EN-3420, CON-LEG101-EN-3430, CON-LEG101-EN-3440 | 85% | 2.5d | 2026-08-12 | 2026-08-24 | 11.68d | 0d | Excavation for Roadway, fences and bridge, cuttings including dump locations (all types of soil) [1970.6]; Loader [240 h]; Water Tanker [240 h]; Grader [240 h]; Truck [240 h]; Road Roller [240 h]; Labor [250 h]; Driver [500 h]; Eq. Operator [750 h] | 3,941.2 | 3,350.02 | A1220 | 0.85 | Fence |
| CON-LEG101-FG-1110 |  | Lean concrete for Foundation [Fence and Gate Segment -02] | 4d | 2026-04-02 A | 2027-03-10 | CON-LEG101-FG-1010, CON-LEG101-EN-3450, CON-LEG101-EN-3460, CON-LEG101-PR-1430 | 85% | 1d | 2026-08-23 | 2026-08-27 | 11.68d | 0d | "Lean concrete [41.81]; Truck [48 h]; Bucket [48 h]; Labor [250 h]; Driver [50 h]; Eq. Operator [50 h]; Carpenter [50 h]; Mason [50 h] | 18,814 | 15,992.33 | A15940 | 0.85 | Fence |
| CON-LEG101-FG-1160 |  | Reinforced concrete Structure [Fence and Gate Segment -02] | 20d | 2026-04-04 A | 2027-03-16 | CON-LEG101-PR-1410, CON-LEG101-FG-1110 | 85% | 5d | 2026-08-27 | 2026-09-20 | 11.68d | 0d | Isolated footings [86.3]; Columns [30.15]; Truck [48 h]; Bucket [48 h]; Labor [250 h]; Driver [50 h]; Eq. Operator [50 h]; Carpenter [50 h]; Steel Fixer; Mason [50 h] | 189,335 | 160,934.75 | A16070 | 0.85 | Fence |
| CON-LEG101-FG-1210 |  | Spraying of bituminous paint waterproofing for R.C foundation [Fence and Gate Segment -02] | 10d | 2026-05-02 A | 2027-03-18 | CON-LEG101-FG-1160, CON-LEG101-PR-1460 | 85% | 2.5d | 2026-10-12 | 2026-10-24 | 11.68d | 0d | "Supply and install cold applied bituminous paint waterproofing for R.C foundation and, as per drawings and specs section: [2617.02]; Labor [50 h]; Mason [100 h] | 39,255.3 | 33,367 | A16150 | 0.85 | Fence |
| CON-LEG101-FG-1330 |  | Embankments to the Fences [Fence and Gate Segment -02] | 8d | 2026-05-09 A | 2027-03-21 | CON-LEG101-FG-1210, CON-LEG101-EN-3410, CON-LEG101-EN-3420, CON-LEG101-EN-3430, CON-LEG101-EN-3440 | 85% | 2d | 2026-10-24 | 2026-11-02 | 11.68d | 0d | Embankments to the roads , fences and bridge. [1372.56]; Excavator [64 h]; Bulldozer [96 h]; Water Tanker [48 h]; Grader [96 h]; Truck [96 h]; Bucket [96 h]; Compactor [96 h]; Labor [200 h]; Driver [200 h]; Eq. Operator [500 h] | 41,176.8 | 35,000.28 | A1640 | 0.85 | Fence |
| CON-LEG101-FG-1060 |  | Concrete Works for Ground Beam for Fences [Fence and Gate Segment -02] | 20d | 2026-05-12 A | 2027-03-27 | CON-LEG101-FG-1330, CON-LEG101-EN-3410, CON-LEG101-EN-3420, CON-LEG101-EN-3430, CON-LEG101-EN-3440 | 85% | 5d | 2026-11-02 | 2026-11-25 | 11.68d | 0d | Grade beams [125.02]; Loader [96 h]; Water Tanker [49 h]; Grader [96 h]; Truck [96 h]; Road Roller [96 h]; Labor [100 h]; Driver [200 h]; Eq. Operator [300 h]; Carpenter; Steel Fixer | 200,032 | 170,027.2 | A1430 | 0.85 | Fence |
| CON-LEG101-FG-1290 |  | Installation of Metal Fence [Fence and Gate Segment -02] | 14d | 2026-09-02 A | 2027-04-20 | CON-LEG101-PR-2080, CON-LEG101-FG-1430, CON-LEG101-PR-2020 | 40% | 8.4d | 2027-02-01 | 2027-02-23 | 11.68d | 0d | "METAL FENCE [449.7]; Excavator [96 h]; Bucket [103.43 h]; Labor [100 h]; Eq. Operator [150 h]; Steel Fixer [100 h] | 584,610 | 233,844 | A16360 | 0.4 | Fence |
| CON-LEG101-FG-1430 |  | Plster Works for Fences [Fence and Gate Segment -02] | 12d | 2027-03-27 | 2027-04-10 | CON-LEG101-FG-1060, CON-LEG101-EN-3410, CON-LEG101-EN-3420, CON-LEG101-EN-3430, CON-LEG101-EN-3440 |  |  |  |  | 11.68d | 0d | "PAINT ON CEMENT PLASTER [272.15]; Excavator [84 h]; Bulldozer [96 h]; Water Tanker [96 h]; Grader [96 h]; Truck [96 h]; Bucket [96 h]; Compactor [96 h]; Labor [200 h]; Driver [200 h]; Eq. Operator [500 h] | 16,329 |  | A1850 |  | Fence |
| CON-LEG101-FG-1350 |  | Paint On Cement Plaster [Fence and Gate Segment -02] | 12d | 2027-04-20 | 2027-05-04 | CON-LEG101-PR-2940, CON-LEG101-FG-1290, CON-LEG101-PR-2630 |  |  |  |  | 11.68d | 0d | "PAINT ON CEMENT PLASTER [272.15] | 16,329 |  | A16440 |  | Fence |

| ID | WBS | Activity | Duration | Start | Finish | Predecessors | Complete | Remaining | Planned start | Planned finish | Total float | Free float | Resources | Cost | Actual cost | Mapping Sheet Activity ID | % A | JEDDAH 1 - Area Name |
| --- | --- | --- | --- | --- | --- | --- | --- | --- | --- | --- | --- | --- | --- | --- | --- | --- | --- | --- |
|  | 3 | **Fence and Gate Segment -03 (From 1+342 to 2+014)** |  | 2026-01-25 | 2027-07-03 |  |  |  |  |  |  |  |  |  |  |  |  |  |
|  | 1 | **Fence** |  | 2026-01-25 | 2027-05-26 |  |  |  |  |  |  |  |  |  |  |  |  |  |
| CON-LEG101-FG-1020 |  | Excavation for Fences [Fence and Gate Segment -03] | 10d | 2026-01-25 A | 2026-03-17 A | CON-LEG101-SD-1000, CON-LEG101-SD-1010, CON-LEG101-SD-1020, CON-LEG101-SD-1030, CON-LEG101-FG-1350, CON-LEG101-EN-3410, CON-LEG101-EN-3420, CON-LEG101-EN-3430, CON-LEG101-EN-3440 | 100% |  | 2026-11-09 | 2026-11-21 |  |  | Excavation for Roadway, fences and bridge, cuttings including dump locations (all types of soil) [1970.6]; Loader [240 h]; Water Tanker [240 h]; Grader [432 h]; Truck [600 h]; Road Roller [240 h]; Labor [250 h]; Driver [650 h]; Eq. Operator [750 h] | 3,941.2 | 3,941.2 | A1230 | 1 | Fence |
| CON-LEG101-FG-1120 |  | Lean concrete for Foundation [Fence and Gate Segment -03] | 4d | 2026-01-31 A | 2026-04-20 A | CON-LEG101-FG-1020, CON-LEG101-EN-3450, CON-LEG101-EN-3460, CON-LEG101-PR-1430 | 100% |  | 2026-11-18 | 2026-11-23 |  |  | "Lean concrete [41.81]; Truck [100 h]; Bucket [48 h]; Labor [250 h]; Driver [100 h]; Eq. Operator [50 h]; Carpenter [100 h]; Mason [50 h] | 18,814 | 18,814.5 | A15950 | 1 | Fence |
| CON-LEG101-FG-1170 |  | Reinforced concrete Structure [Fence and Gate Segment -03] | 20d | 2026-02-11 A | 2026-07-27 A | CON-LEG101-PR-1410, CON-LEG101-FG-1120 | 100% |  | 2026-11-29 | 2026-12-22 |  |  | Isolated footings [86.3]; Strip footings [716.23]; Columns [30.15]; Retaining Walls [781.22]; Truck [116.8 h]; Bucket [48 h]; Labor [250 h]; Driver [200 h]; Eq. Operator [50 h]; Carpenter [120 h]; Steel Fixer; Mason [50 h] | 2,663,377 | 2,663,377 | A16080 | 1 | Fence |
| CON-LEG101-FG-1220 |  | Spraying of bituminous paint waterproofing for R.C foundation [Fence and Gate Segment -03] | 10d | 2026-02-18 A | 2026-08-04 A | CON-LEG101-FG-1170, CON-LEG101-PR-1460 | 100% |  | 2026-12-22 | 2027-01-03 |  |  | "Supply and install cold applied bituminous paint waterproofing for R.C foundation and, as per drawings and specs section: [2617.02]; Labor [50 h]; Mason [100 h] | 39,255.3 | 39,255.3 | A16160 | 1 | Fence |
| CON-LEG101-FG-1390 |  | Embankments to the Fences [Fence and Gate Segment -03] | 8d | 2026-04-01 A | 2026-08-09 A | CON-LEG101-FG-1220, CON-LEG101-EN-3410, CON-LEG101-EN-3420, CON-LEG101-EN-3430, CON-LEG101-EN-3440 | 100% |  | 2027-01-05 | 2027-01-14 |  |  | Embankments to the roads , fences and bridge. [1372.56]; Excavator [96 h]; Bulldozer [96 h]; Water Tanker [96 h]; Grader [96 h]; Truck [96 h]; Bucket [96 h]; Compactor [96 h]; Labor [200 h]; Driver [200 h]; Eq. Operator [500 h] | 41,176.8 | 41,176.8 | A1650 | 1 | Fence |
| CON-LEG101-FG-1070 |  | Concrete Works for Ground Beam for Fences [Fence and Gate Segment -03] | 20d | 2026-04-11 A | 2026-08-20 A | CON-LEG101-FG-1390, CON-LEG101-EN-3410, CON-LEG101-EN-3420, CON-LEG101-EN-3430, CON-LEG101-EN-3440 | 100% |  | 2027-01-14 | 2027-02-07 |  |  | Grade beams [125.02]; Loader [96 h]; Water Tanker [96 h]; Grader [96 h]; Truck [96 h]; Road Roller [96 h]; Labor [100 h]; Driver [280 h]; Eq. Operator [300 h]; Carpenter; Steel Fixer | 200,032 | 200,032 | A1440 | 1 | Fence |
| CON-LEG101-FG-1300 |  | Installation of Metal Fence [Fence and Gate Segment -03] | 14d | 2026-05-14 A | 2027-05-12 | CON-LEG101-PR-2080, CON-LEG101-FG-1440, CON-LEG101-PR-2020 | 97% | 0.42d | 2027-02-03 | 2027-02-25 | 11.68d | 0d | "METAL FENCE [449.7]; Excavator [96 h]; Bucket [48 h]; Labor [100 h]; Eq. Operator [150 h]; Steel Fixer [100 h] | 584,610 | 567,071.7 | A16370 | 0.97 | Fence |
| CON-LEG101-FG-1440 |  | Plster Works for Fences [Fence and Gate Segment -03] | 12d | 2026-08-01 A | 2027-05-12 | CON-LEG101-FG-1070, CON-LEG101-EN-3410, CON-LEG101-EN-3420, CON-LEG101-EN-3430, CON-LEG101-EN-3440 | 40% | 7.2d | 2027-03-24 | 2027-04-07 | 11.68d | 0d | "PAINT ON CEMENT PLASTER [272.15]; Excavator [96 h]; Bulldozer [96 h]; Water Tanker [96 h]; Grader [96 h]; Truck [96 h]; Bucket [96 h]; Compactor [96 h]; Labor [200 h]; Driver [200 h]; Eq. Operator [500 h] | 16,329 | 6,531.6 | A1860 |  | Fence |
| CON-LEG101-FG-1360 |  | Paint On Cement Plaster [Fence and Gate Segment -03] | 12d | 2026-09-19 A | 2027-05-26 | CON-LEG101-PR-2940, CON-LEG101-FG-1300, CON-LEG101-PR-2630 | 40% | 7.2d | 2027-04-07 | 2027-04-21 | 44.48d | 0d | "PAINT ON CEMENT PLASTER [272.15] | 16,329 | 6,531.6 | A16450 |  | Fence |
|  | 2 | **Gate** |  | 2027-05-12 | 2027-07-03 |  |  |  |  |  |  |  |  |  |  |  |  |  |
| CON-LEG101-FG-1250 |  | Installation of Main Entrance Motorized Gate [Fence and Gate Segment -03] | 20d | 2027-05-12 | 2027-06-09 | CON-LEG101-PR-2050, CON-LEG101-PR-2090, CON-LEG101-FG-1300 |  |  |  |  | 11.68d | 0d | Gate, to fit 15000mm opening x 2500mm high [2.01]; Labor [100 h]; Skilled Labor [50 h]; Carpenter [50 h]; Pipe Fitter [50 h] | 80,400 |  | A16240 |  | Fence |
| CON-LEG101-FG-1270 |  | Installation of Pedestrain Gate [Fence and Gate Segment -03] | 20d | 2027-06-09 | 2027-07-03 | CON-LEG101-PR-2050, CON-LEG101-PR-2090, CON-LEG101-FG-1250 |  |  |  |  | 11.68d | 0d | Gate, to fit 3600 mm opening x 2500mm high [2.01]; Labor [100 h]; Skilled Labor [50 h]; Carpenter [50 h]; Pipe Fitter [50 h] | 24,120 |  | A16310 |  | Fence |
|  | 4 | **Fence and Gate Segment -04 (From 2+014 to 2+685)** |  | 2025-12-25 | 2027-09-05 |  |  |  |  |  |  |  |  |  |  |  |  |  |
|  | 1 | **Fence** |  | 2025-12-25 | 2027-09-05 |  |  |  |  |  |  |  |  |  |  |  |  |  |
| CON-LEG101-FG-1030 |  | Excavation for Fences [Fence and Gate Segment -04] | 10d | 2025-12-25 A | 2026-01-27 A | CON-LEG101-SD-1000, CON-LEG101-SD-1010, CON-LEG101-SD-1020, CON-LEG101-SD-1030, CON-LEG101-FG-1360, CON-LEG101-EN-3410, CON-LEG101-EN-3420, CON-LEG101-EN-3430, CON-LEG101-EN-3440 | 100% |  | 2027-03-18 | 2027-03-30 |  |  | Excavation for Roadway, fences and bridge, cuttings including dump locations (all types of soil) [1970.6]; Loader [240 h]; Water Tanker [240 h]; Grader [240 h]; Truck [240 h]; Road Roller [240 h]; Labor [250 h]; Driver [500 h]; Eq. Operator [750 h] | 3,941.2 | 3,941.2 | A1240 | 1 | Fence |
| CON-LEG101-FG-1130 |  | Lean concrete for Foundation [Fence and Gate Segment -04] | 4d | 2026-01-06 A | 2026-02-18 A | CON-LEG101-FG-1030, CON-LEG101-EN-3450, CON-LEG101-EN-3460, CON-LEG101-PR-1430 | 100% |  | 2027-03-20 | 2027-03-24 |  |  | "Lean concrete [41.81]; Truck [48 h]; Bucket [48 h]; Labor [250 h]; Driver [50 h]; Eq. Operator [50 h]; Carpenter [50 h]; Mason [50 h] | 18,814 | 18,814.5 | A15960 | 1 | Fence |
| CON-LEG101-FG-1180 |  | Reinforced concrete Structure [Fence and Gate Segment -04] | 20d | 2026-01-07 A | 2026-04-15 A | CON-LEG101-PR-1410, CON-LEG101-FG-1130 | 100% |  | 2027-03-18 | 2027-04-11 |  |  | Isolated footings [86.3]; Columns [30.15]; Truck [154.8 h]; Bucket [48 h]; Labor [525 h]; Driver [405 h]; Eq. Operator [805 h]; Carpenter [50 h]; Steel Fixer; Mason [205 h] | 189,335 | 189,335 | A16090 | 1 | Fence |
| CON-LEG101-FG-1230 |  | Spraying of bituminous paint waterproofing for R.C foundation [Fence and Gate Segment -04] | 10d | 2026-01-13 A | 2026-04-16 A | CON-LEG101-FG-1180, CON-LEG101-PR-1460, CON-LEG101-FG-1270 | 100% |  | 2027-04-13 | 2027-04-25 |  |  | "Supply and install cold applied bituminous paint waterproofing for R.C foundation and, as per drawings and specs section: [2617.02]; Labor [500 h]; Mason [230 h] | 39,255.3 | 39,255.3 | A16170 | 1 | Fence |
| CON-LEG101-FG-1080 |  | Concrete Works for Ground Beam for Fences [Fence and Gate Segment -04] | 20d | 2026-01-17 A | 2026-06-30 A | CON-LEG101-FG-1400, CON-LEG101-EN-3410, CON-LEG101-EN-3420, CON-LEG101-EN-3430, CON-LEG101-EN-3440, CON-LEG101-MS-1050 | 100% |  | 2027-06-02 | 2027-06-24 |  |  | Grade beams [125.02]; Loader [96 h]; Water Tanker [138.4 h]; Grader [96 h]; Truck [77.6 h]; Road Roller [96 h]; Labor [340 h]; Driver [200 h]; Eq. Operator [480 h]; Carpenter; Steel Fixer | 200,032 | 200,032 | A1450 | 1 | Fence |
| CON-LEG101-FG-1400 |  | Embankments to the Fences [Fence and Gate Segment -04] | 8d | 2026-02-10 A | 2026-04-22 A | CON-LEG101-FG-1230, CON-LEG101-EN-3410, CON-LEG101-EN-3420, CON-LEG101-EN-3430, CON-LEG101-EN-3440 | 100% |  | 2027-04-27 | 2027-05-06 |  |  | Embankments to the roads , fences and bridge. [1372.56]; Excavator [96 h]; Bulldozer [96 h]; Water Tanker [100 h]; Grader [96 h]; Truck [96 h]; Bucket [96 h]; Compactor [96 h]; Labor [400 h]; Driver [200 h]; Eq. Operator [500 h] | 41,176.8 | 41,176.8 | A1660 | 1 | Fence |
| CON-LEG101-FG-1310 |  | Installation of Metal Fence [Fence and Gate Segment -04] | 7d | 2026-04-22 A | 2026-08-19 A | CON-LEG101-PR-2080, CON-LEG101-FG-1450, CON-LEG101-PR-2020, CON-LEG101-MS-1020 | 100% |  | 2027-08-07 | 2027-08-14 |  |  | "METAL FENCE [449.7]; Excavator [20 h]; Bucket [48 h]; Labor [100 h]; Eq. Operator [150 h]; Steel Fixer [100 h] | 584,610 | 584,610 | A16380 | 1 | Fence |
| CON-LEG101-FG-1370 |  | Paint On Cement Plaster [Fence and Gate Segment -04] | 12d | 2026-05-11 A | 2027-09-05 | CON-LEG101-PR-2940, CON-LEG101-FG-1310, CON-LEG101-PR-2630 | 95% | 0.6d | 2027-07-22 | 2027-08-05 | -41.5d | 0d | "PAINT ON CEMENT PLASTER [272.15] | 16,329 | 15,512.55 | A16460 | 0.95 | Fence |
| CON-LEG101-FG-1450 |  | Plster Works for Fences [Fence and Gate Segment -04] | 10d | 2026-09-01 A | 2027-07-04 | CON-LEG101-FG-1080, CON-LEG101-EN-3410, CON-LEG101-EN-3420, CON-LEG101-EN-3430, CON-LEG101-EN-3440 | 95% | 0.5d | 2027-05-22 | 2027-06-02 | 11.18d | 52.68d | "PAINT ON CEMENT PLASTER [272.15]; Excavator [20 h]; Bulldozer [96 h]; Water Tanker [96 h]; Grader [96 h]; Truck [20 h]; Bucket [96 h]; Compactor [96 h]; Labor [200 h]; Driver [200 h]; Eq. Operator [500 h] | 16,329 | 15,512.55 | A1870 | 0.6 | Fence |

| ID | WBS | Activity | Duration | Start | Finish | Predecessors | Complete | Remaining | Planned start | Planned finish | Total float | Free float | Resources | Cost | Actual cost | Mapping Sheet Activity ID | JEDDAH 1 - Area Name |
| --- | --- | --- | --- | --- | --- | --- | --- | --- | --- | --- | --- | --- | --- | --- | --- | --- | --- |
|  | 5 | **Fence and Gate Segment -05 (From 2+685 to 3+356)** |  | 2027-09-05 | 2027-12-11 |  |  |  |  |  |  |  |  |  |  |  |  |
|  | 1 | **Fence** |  | 2027-09-05 | 2027-12-11 |  |  |  |  |  |  |  |  |  |  |  |  |
| CON-LEG101-FG-1040 |  | Excavation for Fences [Fence and Gate Segment -05] | 10d | 2027-09-05 | 2027-09-16 | CON-LEG101-SD-1000, CON-LEG101-SD-1010, CON-LEG101-SD-1020, CON-LEG101-SD-1030, CON-LEG101-FG-1370, CON-LEG101-EN-3410, CON-LEG101-EN-3420, CON-LEG101-EN-3430, CON-LEG101-EN-3440, CON-LEG101-MS-1020 |  |  |  |  | -41.5d | 0d | Excavation for Roadway, fences and bridge, cuttings including dump locations (all types of soil) [1970.6]; Loader [240 h]; Water Tanker [240 h]; Grader [240 h]; Truck [240 h]; Road Roller [240 h]; Labor [250 h]; Driver [500 h]; Eq. Operator [750 h] | 3,941.2 |  | A1250 | Fence |
| CON-LEG101-FG-1140 |  | Lean concrete for Foundation [Fence and Gate Segment -05] | 4d | 2027-09-16 | 2027-09-21 | CON-LEG101-FG-1040, CON-LEG101-EN-3450, CON-LEG101-EN-3460, CON-LEG101-PR-1430 |  |  |  |  | -41.5d | 0d | "Lean concrete [41.81]; Truck [48 h]; Bucket [48 h]; Labor [250 h]; Driver [50 h]; Eq. Operator [50 h]; Carpenter [50 h]; Mason [50 h] | 18,814 |  | A15970 | Fence |
| CON-LEG101-FG-1190 |  | Reinforced concrete Structure [Fence and Gate Segment -05] | 20d | 2027-09-21 | 2027-10-16 | CON-LEG101-PR-1410, CON-LEG101-FG-1140 |  |  |  |  | -41.5d | 0d | Isolated footings [86.3]; Columns [30.15]; Truck [48 h]; Bucket [48 h]; Labor [250 h]; Driver [50 h]; Eq. Operator [50 h]; Carpenter [50 h]; Steel Fixer; Mason [50 h] | 189,335 |  | A16100 | Fence |
| CON-LEG101-FG-1240 |  | Spraying of bituminous paint waterproofing for R.C foundation [Fence and Gate Segment -05] | 10d | 2027-10-16 | 2027-10-27 | CON-LEG101-FG-1190, CON-LEG101-PR-1460 |  |  |  |  | -41.5d | 0d | "Supply and install cold applied bituminous paint waterproofing for R.C foundation and, as per drawings and specs section: [2617.02]; Labor [50 h]; Mason [100 h] | 39,255.3 |  | A16180 | Fence |
| CON-LEG101-FG-1410 |  | Embankments to the Fences [Fence and Gate Segment -05] | 4d | 2027-10-27 | 2027-11-01 | CON-LEG101-FG-1240, CON-LEG101-EN-3410, CON-LEG101-EN-3420, CON-LEG101-EN-3430, CON-LEG101-EN-3440 |  |  |  |  | -41.5d | 0d | Embankments to the roads , fences and bridge. [1372.56]; Excavator [96 h]; Bulldozer [96 h]; Water Tanker [96 h]; Grader [96 h]; Truck [96 h]; Bucket [96 h]; Compactor [96 h]; Labor [200 h]; Driver [200 h]; Eq. Operator [500 h] | 41,176.8 |  | A1670 | Fence |
| CON-LEG101-FG-1090 |  | Concrete Works for Ground Beam for Fences [Fence and Gate Segment -05] | 15d | 2027-11-01 | 2027-11-18 | CON-LEG101-FG-1410, CON-LEG101-EN-3410, CON-LEG101-EN-3420, CON-LEG101-EN-3430, CON-LEG101-EN-3440 |  |  |  |  | -41.5d | 0d | Grade beams [125.02]; Loader [96 h]; Water Tanker [96 h]; Grader [96 h]; Truck [96 h]; Road Roller [96 h]; Labor [100 h]; Driver [200 h]; Eq. Operator [300 h]; Carpenter; Steel Fixer | 200,032 |  | A1460 | Fence |
| CON-LEG101-FG-1460 |  | Plster Works for Fences [Fence and Gate Segment -05] | 6d | 2027-11-18 | 2027-11-25 | CON-LEG101-FG-1090, CON-LEG101-EN-3410, CON-LEG101-EN-3420, CON-LEG101-EN-3430, CON-LEG101-EN-3440 |  |  |  |  | -41.5d | 0d | "PAINT ON CEMENT PLASTER [272.15]; Excavator [96 h]; Bulldozer [96 h]; Water Tanker [96 h]; Grader [96 h]; Truck [96 h]; Bucket [96 h]; Compactor [96 h]; Labor [200 h]; Driver [200 h]; Eq. Operator [500 h] | 16,329 |  | A1880 | Fence |
| CON-LEG101-FG-1320 |  | Installation of Metal Fence [Fence and Gate Segment -05] | 7d | 2027-11-25 | 2027-12-04 | CON-LEG101-FG-1460, CON-LEG101-FG-1240, CON-LEG101-PR-2020 |  |  |  |  | -41.5d | 0d | "METAL FENCE [449.7]; Excavator [96 h]; Bucket [48 h]; Labor [100 h]; Eq. Operator [150 h]; Steel Fixer [100 h] | 584,610 |  | A16390 | Fence |
| CON-LEG101-FG-1380 |  | Paint On Cement Plaster [Fence and Gate Segment -05] | 6d | 2027-12-04 | 2027-12-11 | CON-LEG101-PR-2940, CON-LEG101-FG-1320, CON-LEG101-PR-2630 |  |  |  |  | -41.5d | 0d | "PAINT ON CEMENT PLASTER [272.19] | 16,331.4 |  | A16470 | Fence |
|  | 2 | **Roundabout & Landscape** |  | 2026-10-17 | 2028-05-02 |  |  |  |  |  |  |  |  |  |  |  |  |
|  | 10 | **Local – 01** |  | 2026-10-17 | 2028-01-13 |  |  |  |  |  |  |  |  |  |  |  |  |
|  | 1 | **LOCAL - 01 Segment-01 (From 0+000 to 1+066)** |  | 2026-10-17 | 2027-12-14 |  |  |  |  |  |  |  |  |  |  |  |  |
|  | 3 | **Irrigation Works** |  | 2026-10-17 | 2027-10-28 |  |  |  |  |  |  |  |  |  |  |  |  |
|  | 1 | **Secondary Irrigation** |  | 2026-10-17 | 2027-10-28 |  |  |  |  |  |  |  |  |  |  |  |  |
|  | 1 | **Pipe Work** |  | 2026-10-17 | 2027-09-09 |  |  |  |  |  |  |  |  |  |  |  |  |
| CON-LEG101-LR-4940 |  | Sand bedding for Secondary Irrigation [Local – 01 Segment-01] | 5d | 2026-10-17 A | 2027-08-14 | CON-LEG101-LR-4870 | 50% | 2.5d | 2027-08-12 | 2027-08-18 | -74.65d | 0d | Loader [48 h]; Truck [48 h]; Driver [50 h]; Eq. Operator [50 h] |  |  | A17930 | Landsca |
| CON-LEG101-LR-4870 |  | Excavation for Secondary Irrigation [Local – 01 Segment-01] | 8d | 2026-10-18 A | 2027-08-10 | CON-LEG101-LR-6180, CON-LEG101-LR-7420 SS, CON-LEG101-EN-3340, CON-LEG101-EN-3440 | 50% | 4d | 2027-08-03 | 2027-08-12 | -103.65d | 0d | Pipe line O.D 50 mm PN 10, in depth 0 to 1.5 m [4.02]; Pipe line O.D 32 mm PN 10, in depth 0 to 1.5 m [2.43]; Excavator [48 h]; Water Tanker [48 h]; Truck [96 h]; Crane [48 h]; Labor [200 h]; Driver [150 h]; Eq. Operator [100 h] | 1,241.4 | 620.7 | A17830 | Landsca |
| CON-LEG101-LR-5010 |  | Installation of Pipe for Secondary Irrigation [Local – 01 Segment-01] | 10d | 2026-10-19 A | 2027-08-19 | CON-LEG101-PR-3980, CON-LEG101-LR-4940, CON-LEG101-PR-3940 | 50% | 5d | 2027-08-18 | 2027-08-30 | -74.65d | 0d | Pipe line O.D 50 mm PN 10, in depth 0 to 1.5 m [12.06]; Pipe line O.D 32 mm PN 10, in depth 0 to 1.5 m [7.24]; Excavator [48 h]; Crane [48 h]; Labor [260 h]; Skilled Labor [100 h]; Eq. Operator [440 h]; Plumber [50 h]; Pipe Fitter [50 h] | 3,715.2 | 1,857.6 | A18030 | Landsca |
| CON-LEG101-LR-5080 |  | Sand Surround for Secondary Irrigation [Local – 01 Segment-01] | 5d | 2026-10-20 A | 2027-08-22 | CON-LEG101-LR-5010 | 50% | 2.5d | 2027-08-30 | 2027-09-05 | -74.65d | 0d | Loader [48 h]; Truck [150 h]; Driver [500 h]; Eq. Operator [400 h] |  |  | A18130 | Landsca |
| CON-LEG101-LR-5150 |  | Installation of Micron Marker Magnetic Tape [Local – 01 Segment-01] | 10d | 2026-10-21 A | 2027-08-28 | CON-LEG101-LR-5080 | 50% | 5d | 2027-09-05 | 2027-09-16 | -74.65d | 0d | Labor [200 h] |  |  | A18230 | Landsca |
| CON-LEG101-LR-5210 |  | Backfilling to Subgrade Elevation [Local – 01 Segment-01] | 5d | 2026-10-22 A | 2027-08-31 | CON-LEG101-LR-5150, CON-LEG101-EN-3440 | 50% | 2.5d | 2027-09-16 | 2027-09-22 | -74.65d | 0d | Pipe line O.D 50 mm PN 10, in depth 0 to 1.5 m [4.02]; Pipe line O.D 32 mm PN 10, in depth 0 to 1.5 m [2.41]; Excavator [48 h]; Water Tanker [200 h]; Road Roller [300 h]; Bucket [48 h]; Compactor [48 h]; Labor [200 h]; Driver [400 h]; Eq. Operator [400 h] | 1,237.8 | 618.9 | A18330 | Landsca |
| CON-LEG101-LR-5410 |  | Installation of tubing for risers connections from laterals [Local – 01 Segment-01] | 17d | 2026-10-24 A | 2027-09-09 | CON-LEG101-LR-5210, CON-LEG101-PR-2770 | 50% | 8.5d | 2027-09-22 | 2027-10-13 | -74.65d | 0d | Pipe line O.D 25 mm PN 10, in depth 0 to 1.5 m [103.52]; Supply and installation of 16 mm dia (O.D.) linear low density polyethylene tubing including in line P.C. emitters, accessories, stakes, takeoff /risers connections from laterals, and all requirements needed to finish work as per drawings (In line dripper [2748.17]; Excavator [46.71 h]; Labor [102.94 h]; Skilled Labor [100 h]; Eq. Operator [50 h]; Pipe Fitter [50 h] | 118,208.4 | 59,104.2 | A18810 | Landsca |

| ID | WBS | Activity | Duration | Start | Finish | Predecessors | Complete | Remaining | Planned start | Planned finish | Total float | Free float | Resources | Cost | Actual cost | Mapping Sheet Activity ID | JEDDAH 1 - Area Name |
| --- | --- | --- | --- | --- | --- | --- | --- | --- | --- | --- | --- | --- | --- | --- | --- | --- | --- |
|  | 2 | **Valves and Controller** |  | 2027-09-09 | 2027-10-28 |  |  |  |  |  |  |  |  |  |  |  |  |
| CON-LEG101-LR-5270 |  | Installation of Electrical Solenoid Valve [Local – 01 Segment-01] | 5d | 2027-09-09 | 2027-09-15 | CON-LEG101-LR-5010, CON-LEG101-PR-3020, CON-LEG101-LR-5410 |  |  |  |  | -74.65d | 0d | Supply and installation of Electrical Solenoid Valve ( 1") inside PVC box with all accessories( pressure regulator module, manual bleeding, expedient for TSE water, in line filter, manual valve, valve box with cover, and all other accessories necessary to [0.67]; Excavator [20 h]; Labor [100 h]; Skilled Labor [50 h]; Eq. Operator [50 h]; Pipe Fitter [50 h] | 4,355 |  | A18470 | Landsca |
| CON-LEG101-LR-5310 |  | Installation of quick coupler valve [Local – 01 Segment-01] | 5d | 2027-09-15 | 2027-09-21 | CON-LEG101-LR-5270, CON-LEG101-PR-3030 |  |  |  |  | -74.65d | 0d | Supply and installation of 1" quick coupler valve inside PVC box [1.34]; Excavator [20 h]; Labor [100 h]; Skilled Labor [50 h]; Eq. Operator [50 h]; Pipe Fitter [50 h] | 6,030 |  | A18570 | Landsca |
| CON-LEG101-LR-5350 |  | Installation of a Flush valve [Local – 01 Segment-01] | 5d | 2027-09-21 | 2027-09-28 | CON-LEG101-PR-2760, CON-LEG101-LR-5310, CON-LEG101-PR-3110 |  |  |  |  | -74.65d | 0d | "Supply and installation of a flush valve at the end of ½-inch drip irrigation lines, including all necessary accessories such as protective box and fittings, to complete the work as required and in accordance with the supervising engineer’s instructions. [6.7]; Excavator [20 h]; Labor [100 h]; Skilled Labor [50 h]; Eq. Operator [400 h]; Pipe Fitter [50 h] | 13,400 |  | A18690 | Landsca |
| CON-LEG101-LR-5470 |  | Installation of Advanced Irrigation controller [Local – 01 Segment-01] | 7d | 2027-09-28 | 2027-10-06 | CON-LEG101-PR-2780, CON-LEG101-LR-5350, CON-LEG101-PR-3040 |  |  |  |  | -74.65d | 0d | Supply and installation of Advanced Irrigation controller subject to client approval, can connect with Centarl Control system and cabable to integrate with Smart City systems,BMS or Scada system ,Can record the real flow rate per stations, [0.67]; Excavator [20 h]; Labor [100 h]; Skilled Labor [50 h]; Eq. Operator [50 h]; Pipe Fitter [50 h] | 234,500 |  | A18930 | Landsca |
| CON-LEG101-LR-5480 |  | Install single station decoder for valve connection [Local – 01 Segment-01] | 7d | 2027-10-06 | 2027-10-14 | CON-LEG101-LR-5470, CON-LEG101-PR-3150 |  |  |  |  | -74.65d | 0d | Supply and install single station decoder for valve connection to field controller including waterproof connectors and all other accessories necessary to complete the works in accordance with specifications and drawings (Decoder Single station ). [1.34]; Excavator [48 h]; Labor [100 h]; Skilled Labor [50 h]; Eq. Operator [50 h]; Pipe Fitter [50 h] | 6,700 |  | A18970 | Landsca |
| CON-LEG101-LR-5520 |  | Installation of Decoder cables 12 AWG between valves and controllers [Local – 01 Segment-01] | 12d | 2027-10-14 | 2027-10-28 | CON-LEG101-LR-5480, CON-LEG101-PR-3050 |  |  |  |  | -74.65d | 0d | Supply and installation of Decoder cables 12 AWG between valves and controllers, The cables shall be pulled through 32? UPVC conduit and inspection 10" round valve box every 100 meters, as per standard specification and drawings [324.1]; Excavator [48 h]; Labor [100 h]; Skilled Labor [50 h]; Eq. Operator [50 h]; Pipe Fitter [50 h] | 19,446 |  | A19070 | Landsca |
|  | 14 | **Curbs and edging** |  | 2027-10-28 | 2027-10-31 |  |  |  |  |  |  |  |  |  |  |  |  |
| CON-LEG101-LR-4790 |  | Installation of Curbs and edging [Local – 01 Segment-01] | 2d | 2027-10-28 | 2027-10-31 | CON-LEG101-LR-5520, CON-LEG101-PR-3070, CON-LEG101-EN-3400 |  |  |  |  | -74.65d | 0d | Planting curb edge, size 500 x 250 x 100 mm. [34.17]; Labor [100 h]; Skilled Labor [100 h] | 4,100.4 |  | A17670 | Landsca |
|  | 13 | **Landscape** |  | 2027-10-31 | 2027-12-14 |  |  |  |  |  |  |  |  |  |  |  |  |
| CON-LEG101-LR-4580 |  | Site preparation for Planting Area [Local – 01 Segment-01] | 9d | 2027-10-31 | 2027-11-10 | CON-LEG101-LR-4790, CON-LEG101-EN-3370, CON-LEG101-EN-3440 |  |  |  |  | -74.65d | 0d | Ref. SH-01, Golden daisy bush euryops pectinatus [183.21]; Loader [48 h]; Water Tanker [48 h]; Compactor [48 h]; Labor [150 h]; Skilled Labor [50 h]; Driver [50 h]; Eq. Operator [100 h] | 20,153.1 |  | A17340 | Landsca |
| CON-LEG101-LR-4650 |  | Placing Agricutural Soil [Local – 01 Segment-01] | 9d | 2027-11-10 | 2027-11-21 | CON-LEG101-LR-4580, CON-LEG101-EN-3380 |  |  |  |  | -74.65d | 0d | Ref. SH-01, Golden daisy bush euryops pectinatus [183.23]; Loader [48 h]; Water Tanker [48 h]; Labor [200 h]; Driver [50 h]; Eq. Operator [50 h] | 20,155.3 |  | A17440 | Landsca |
| CON-LEG101-LR-4720 |  | Planting Shrubs And Ground Cover [Local – 01 Segment-01] | 20d | 2027-11-21 | 2027-12-14 | CON-LEG101-LR-4650, CON-LEG101-EN-3390, CON-LEG101-PR-3060 |  |  |  |  | -48.65d | 120.35d | Ref. SH-01, Golden daisy bush euryops pectinatus [549.63]; Labor [150 h] | 60,459.3 |  | A17540 | Landsca |
|  | 2 | **LOCAL - 01 Segment-02 (From 1+066 to 2+133)** |  | 2026-10-17 | 2028-01-13 |  |  |  |  |  |  |  |  |  |  |  |  |
|  | 2 | **Irrigation Works** |  | 2026-10-17 | 2027-12-11 |  |  |  |  |  |  |  |  |  |  |  |  |
|  | 1 | **Secondary Irrigation** |  | 2026-10-17 | 2027-12-11 |  |  |  |  |  |  |  |  |  |  |  |  |
|  | 1 | **Pipe Work** |  | 2026-10-17 | 2027-10-09 |  |  |  |  |  |  |  |  |  |  |  |  |
| CON-LEG101-LR-4880 |  | Excavation for Secondary Irrigation [Local – 01 Segment-02] | 5d | 2026-10-17 A | 2027-09-13 | CON-LEG101-LR-6190, CON-LEG101-LR-8090, CON-LEG101-EN-3340, CON-LEG101-EN-3440, CON-LEG101-LR-5410 | 50% | 2.5d | 2027-10-13 | 2027-10-19 | -50.65d | 0d | Pipe line O.D 50 mm PN 10, in depth 0 to 1.5 m [1.34]; Pipe line O.D 32 mm PN 10, in depth 0 to 1.5 m [0.8]; Excavator [20 h]; Water Tanker [48 h]; Truck [20 h]; Crane [48 h]; Labor [200 h]; Driver [150 h]; Eq. Operator [100 h] | 412 | 206 | A17840 | Landsca |
| CON-LEG101-LR-4950 |  | Sand bedding for Secondary Irrigation [Local – 01 Segment-02] | 5d | 2026-10-18 A | 2027-09-15 | CON-LEG101-LR-4880, CON-LEG101-MS-1020 | 50% | 2.5d | 2027-10-19 | 2027-10-25 | -50.65d | 0d | Loader [48 h]; Truck [20 h]; Driver [50 h]; Eq. Operator [50 h] |  |  | A17940 | Landsca |
| CON-LEG101-LR-5020 |  | Installation of Pipe for Secondary Irrigation [Local – 01 Segment-02] | 5d | 2026-10-19 A | 2027-09-19 | CON-LEG101-PR-3980, CON-LEG101-LR-4950, CON-LEG101-PR-3940 | 50% | 2.5d | 2027-10-25 | 2027-10-31 | -50.65d | 0d | Pipe line O.D 50 mm PN 10, in depth 0 to 1.5 m [4.02]; Pipe line O.D 32 mm PN 10, in depth 0 to 1.5 m [2.41]; Excavator [20 h]; Crane [48 h]; Labor [150 h]; Skilled Labor [100 h]; Eq. Operator [100 h]; Plumber [50 h]; Pipe Fitter [50 h] | 1,237.8 | 618.9 | A18040 | Landsca |
| CON-LEG101-LR-5090 |  | Sand Surround for Secondary Irrigation [Local – 01 Segment-02] | 5d | 2026-10-20 A | 2027-09-21 | CON-LEG101-LR-5020 | 50% | 2.5d | 2027-10-31 | 2027-11-06 | -50.65d | 0d | Loader [48 h]; Truck [20 h]; Driver [50 h]; Eq. Operator [50 h] |  |  | A18140 | Landsca |
| CON-LEG101-LR-5160 |  | Installation of Micron Marker Magnetic Tape [Local – 01 Segment-02] | 5d | 2026-10-21 A | 2027-09-26 | CON-LEG101-LR-5090 | 50% | 2.5d | 2027-11-06 | 2027-11-11 | -50.65d | 0d | Labor [100 h] |  |  | A18240 | Landsca |
| CON-LEG101-LR-5220 |  | Backfilling to Subgrade Elevation [Local – 01 Segment-02] | 5d | 2026-10-22 A | 2027-09-28 | CON-LEG101-LR-5160, CON-LEG101-EN-3440 | 50% | 2.5d | 2027-11-11 | 2027-11-17 | -50.65d | 0d | Pipe line O.D 50 mm PN 10, in depth 0 to 1.5 m [1.34]; Pipe line O.D 32 mm PN 10, in depth 0 to 1.5 m [0.8]; Excavator [48 h]; Water Tanker [48 h]; Road Roller [48 h]; Bucket [48 h]; Compactor [48 h]; Labor [100 h]; Driver [50 h]; Eq. Operator [200 h] | 412 | 206 | A18340 | Landsca |
| CON-LEG101-LR-5420 |  | Installation of tubing for risers connections from laterals [Local – 01 Segment-02] | 17d | 2026-10-24 A | 2027-10-09 | CON-LEG101-LR-5220, CON-LEG101-PR-2770 | 50% | 8.5d | 2027-11-17 | 2027-12-07 | -50.65d | 0d | Pipe line O.D 25 mm PN 10, in depth 0 to 1.5 m [34.5]; Supply and installation of 16 mm dia (O.D.) linear low density polyethylene tubing including in line P.C. emitters, accessories, stakes, takeoff /risers connections from laterals, and all requirements needed to finish work as per drawings (In line dripper [916.06]; Excavator [48 h]; Labor [50 h]; Skilled Labor [100 h]; Eq. Operator [50 h]; Pipe Fitter [50 h] | 39,402.4 | 19,701.2 | A18820 | Landsca |

| ID | WBS | Activity | Duration | Start | Finish | Predecessors | Complete | Remaining | Planned start | Planned finish | Total float | Free float | Resources | Cost | Actual cost | Mapping Sheet Activity ID | JEDDAH 1 - Area Name |
| --- | --- | --- | --- | --- | --- | --- | --- | --- | --- | --- | --- | --- | --- | --- | --- | --- | --- |
|  | 2 | **Valves and Controller** |  | 2027-11-21 | 2027-12-11 |  |  |  |  |  |  |  |  |  |  |  |  |
| CON-LEG101-LR-5360 |  | Installation of a Flush valve [Local – 01 Segment-02] | 5d | 2027-11-21 | 2027-11-27 | CON-LEG101-PR-2760, CON-LEG101-LR-5020, CON-LEG101-PR-3110, CON-LEG101-LR-4650 |  |  |  |  | -74.65d | 0d | Supply and installation of Electrical Solenoid Valve ( 1.5") inside PVC box with all accessories( pressure regulator module, manual bleeding, expedient for TSE water, in line filter, manual valve, valve box with cover, and all other accessories necessary [0.67]; "Supply and installation of a flush valve at the end of ½-inch drip irrigation lines, including all necessary accessories such as protective box and fittings, to complete the work as required and in accordance with the supervising engineer’s instructions. [3.35]; Excavator [48 h]; Labor [100 h]; Skilled Labor [50 h]; Eq. Operator [50 h]; Pipe Fitter [50 h] | 11,725 |  | A18700 | Landsca |
| CON-LEG101-LR-5530 |  | Installation of Decoder cables 12 AWG between valves and controllers [Local – 01 Segment-02] | 12d | 2027-11-27 | 2027-12-11 | CON-LEG101-PR-2790, CON-LEG101-LR-5360, CON-LEG101-PR-3050 |  |  |  |  | -74.65d | 0d | Supply and installation of Decoder cables 12 AWG between valves and controllers, The cables shall be pulled through 32? UPVC conduit and inspection 10" round valve box every 100 meters, as per standard specification and drawings [108.04]; Excavator [48 h]; Labor [100 h]; Skilled Labor [50 h]; Eq. Operator [50 h]; Pipe Fitter [50 h] | 6,482.4 |  | A19080 | Landsca |
|  | 14 | **Curbs and edging** |  | 2027-12-11 | 2027-12-13 |  |  |  |  |  |  |  |  |  |  |  |  |
| CON-LEG101-LR-4800 |  | Installation of Curbs and edging [Local – 01 Segment-02] | 2d | 2027-12-11 | 2027-12-13 | CON-LEG101-LR-5530, CON-LEG101-PR-3070, CON-LEG101-EN-3400 |  |  |  |  | -74.65d | 0d | Planting curb edge, size 500 x 250 x 100 mm. [11.39]; Labor [100 h]; Skilled Labor [100 h] | 1,366.8 |  | A17680 | Landsca |
|  | 13 | **Landscape** |  | 2027-12-13 | 2028-01-13 |  |  |  |  |  |  |  |  |  |  |  |  |
| CON-LEG101-LR-4590 |  | Site preparation for Planting Area [Local – 01 Segment-02] | 9d | 2027-12-13 | 2027-12-23 | CON-LEG101-LR-4800, CON-LEG101-EN-3370, CON-LEG101-EN-3440 |  |  |  |  | -74.65d | 0d | Ref. SH-01, Golden daisy bush euryops pectinatus [61.07]; Loader [48 h]; Water Tanker [48 h]; Compactor [48 h]; Labor [150 h]; Skilled Labor [50 h]; Driver [50 h]; Eq. Operator [100 h] | 6,717.7 |  | A17350 | Landsca |
| CON-LEG101-LR-4660 |  | Placing Agricutural Soil [Local – 01 Segment-02] | 9d | 2027-12-23 | 2028-01-03 | CON-LEG101-LR-4590, CON-LEG101-EN-3380 |  |  |  |  | -74.65d | 0d | Ref. SH-01, Golden daisy bush euryops pectinatus [61.07]; Loader [48 h]; Water Tanker [48 h]; Labor [200 h]; Driver [50 h]; Eq. Operator [50 h] | 6,717.7 |  | A17450 | Landsca |
| CON-LEG101-LR-4730 |  | Planting Shrubs And Ground Cover [Local – 01 Segment-02] | 9d | 2028-01-03 | 2028-01-13 | CON-LEG101-LR-4660, CON-LEG101-EN-3390, CON-LEG101-PR-3060 |  |  |  |  | -74.65d | 94.35d | Ref. SH-01, Golden daisy bush euryops pectinatus [183.21]; Labor [150 h] | 20,153.1 |  | A17550 | Landsca |
|  | 3 | **LOCAL - 01 Segment-03 (From 2+133 to 3+200)** |  | 2026-10-24 | 2027-12-09 |  |  |  |  |  |  |  |  |  |  |  |  |
|  | 2 | **Irrigation Works** |  | 2026-10-24 | 2027-11-10 |  |  |  |  |  |  |  |  |  |  |  |  |
|  | 1 | **Secondary Irrigation** |  | 2026-10-24 | 2027-11-10 |  |  |  |  |  |  |  |  |  |  |  |  |
|  | 1 | **Pipe Work** |  | 2026-10-24 | 2027-11-10 |  |  |  |  |  |  |  |  |  |  |  |  |
| CON-LEG101-LR-4890 |  | Excavation for Secondary Irrigation [Local – 01 Segment-03] | 5d | 2026-10-24 A | 2027-10-11 | CON-LEG101-LR-6200, CON-LEG101-LR-8100, CON-LEG101-EN-3340, CON-LEG101-EN-3440, CON-LEG101-LR-5420 | 50% | 2.5d | 2027-12-07 | 2027-12-13 | -50.65d | 0d | Pipe line O.D 50 mm PN 10, in depth 0 to 1.5 m [1.34]; Pipe line O.D 32 mm PN 10, in depth 0 to 1.5 m [0.8]; Excavator [48 h]; Water Tanker [48 h]; Truck [96 h]; Crane [48 h]; Labor [200 h]; Driver [150 h]; Eq. Operator [100 h] | 412 | 206 | A17850 | Landsca |
| CON-LEG101-LR-4960 |  | Sand bedding for Secondary Irrigation [Local – 01 Segment-03] | 5d | 2026-10-25 A | 2027-10-14 | CON-LEG101-LR-4890 | 50% | 2.5d | 2027-12-13 | 2027-12-19 | -44.65d | 0d | Loader [48 h]; Truck [48 h]; Driver [50 h]; Eq. Operator [50 h] |  |  | A17950 | Landsca |
| CON-LEG101-LR-5030 |  | Installation of Pipe for Secondary Irrigation [Local – 01 Segment-03] | 5d | 2026-10-26 A | 2027-10-17 | CON-LEG101-PR-3980, CON-LEG101-LR-4960, CON-LEG101-PR-3940 | 50% | 2.5d | 2027-12-19 | 2027-12-25 | -44.65d | 0d | Pipe line O.D 50 mm PN 10, in depth 0 to 1.5 m [4.02]; Pipe line O.D 32 mm PN 10, in depth 0 to 1.5 m [2.41]; Excavator [48 h]; Crane [48 h]; Labor [150 h]; Skilled Labor [100 h]; Eq. Operator [100 h]; Plumber [50 h]; Pipe Fitter [50 h] | 1,237.8 | 618.9 | A18050 | Landsca |
| CON-LEG101-LR-5100 |  | Sand Surround for Secondary Irrigation [Local – 01 Segment-03] | 8d | 2026-10-27 A | 2027-10-21 | CON-LEG101-LR-5030 | 50% | 4d | 2027-12-25 | 2028-01-03 | -19.15d | 0d | Loader [48 h]; Truck [48 h]; Driver [50 h]; Eq. Operator [50 h] |  |  | A18150 | Landsca |
| CON-LEG101-LR-5170 |  | Installation of Micron Marker Magnetic Tape [Local – 01 Segment-03] | 8d | 2026-10-28 A | 2027-10-26 | CON-LEG101-LR-5100 | 50% | 4d | 2028-01-03 | 2028-01-12 | -19.15d | 0d | Labor [100 h] |  |  | A18250 | Landsca |
| CON-LEG101-LR-5230 |  | Backfilling to Subgrade Elevation [Local – 01 Segment-03] | 8d | 2026-10-29 A | 2027-10-31 | CON-LEG101-LR-5170, CON-LEG101-EN-3440 | 50% | 4d | 2028-01-12 | 2028-01-22 | -19.15d | 0d | Pipe line O.D 50 mm PN 10, in depth 0 to 1.5 m [1.34]; Pipe line O.D 32 mm PN 10, in depth 0 to 1.5 m [0.8]; Excavator [48 h]; Water Tanker [48 h]; Road Roller [48 h]; Bucket [48 h]; Compactor [48 h]; Labor [100 h]; Driver [50 h]; Eq. Operator [200 h] | 412 | 206 | A18350 | Landsca |
| CON-LEG101-LR-5430 |  | Installation of tubing for risers connections from laterals [Local – 01 Segment-03] | 17d | 2026-10-31 A | 2027-11-10 | CON-LEG101-LR-5230, CON-LEG101-PR-2770 | 50% | 8.5d | 2028-01-22 | 2028-02-10 | -19.15d | 149.85d | Pipe line O.D 25 mm PN 10, in depth 0 to 1.5 m [34.5]; Supply and installation of 16 mm dia (O.D.) linear low density polyethylene tubing including in line P.C. emitters, accessories, stakes, takeoff /risers connections from laterals, and all requirements needed to finish work as per drawings (In line dripper [916.06]; Excavator [48 h]; Labor [50 h]; Skilled Labor [100 h]; Eq. Operator [50 h]; Pipe Fitter [50 h] | 39,402.4 | 19,701.2 | A18830 | Landsca |
|  | 2 | **Valves and Controller** |  | 2027-10-17 | 2027-11-06 |  |  |  |  |  |  |  |  |  |  |  |  |
| CON-LEG101-LR-5370 |  | Installation of a Flush valve [Local – 01 Segment-03] | 5d | 2027-10-17 | 2027-10-23 | CON-LEG101-PR-2760, CON-LEG101-LR-5030, CON-LEG101-PR-3110 |  |  |  |  | -44.65d | 0d | Supply and installation of Electrical Solenoid Valve ( 1.5") inside PVC box with all accessories( pressure regulator module, manual bleeding, expedient for TSE water, in line filter, manual valve, valve box with cover, and all other accessories necessary [0.67]; Supply and installation of 1" quick coupler valve inside PVC box [0.67]; "Supply and installation of a flush valve at the end of ½-inch drip irrigation lines, including all necessary accessories such as protective box and fittings, to complete the work as required and in accordance with the supervising engineer’s instructions. [3.35]; Excavator [48 h]; Labor [100 h]; Skilled Labor [50 h]; Eq. Operator [50 h]; Pipe Fitter [50 h] | 14,740 |  | A18710 | Landsca |
| CON-LEG101-LR-5540 |  | Installation of Decoder cables 12 AWG between valves and controllers [Local – 01 Segment-03] | 12d | 2027-10-23 | 2027-11-06 | CON-LEG101-PR-2790, CON-LEG101-LR-5370, CON-LEG101-PR-3050 |  |  |  |  | -44.65d | 0d | Supply and installation of Decoder cables 12 AWG between valves and controllers, The cables shall be pulled through 32? UPVC conduit and inspection 10" round valve box every 100 meters, as per standard specification and drawings [108.04]; Excavator [48 h]; Labor [100 h]; Skilled Labor [50 h]; Eq. Operator [50 h]; Pipe Fitter [50 h] | 6,482.4 |  | A19090 | Landsca |
|  | 14 | **Curbs and edging** |  | 2027-11-06 | 2027-11-08 |  |  |  |  |  |  |  |  |  |  |  |  |
| CON-LEG101-LR-4810 |  | Installation of Curbs and edging [Local – 01 Segment-03] | 2d | 2027-11-06 | 2027-11-08 | CON-LEG101-LR-5540, CON-LEG101-PR-3070, CON-LEG101-EN-3400 |  |  |  |  | -44.65d | 0d | Planting curb edge, size 500 x 250 x 100 mm. [11.39]; Labor [100 h]; Skilled Labor [100 h] | 1,366.8 |  | A17690 | Landsca |

| ID | WBS | Activity | Duration | Start | Finish | Predecessors | Complete | Remaining | Planned start | Planned finish | Total float | Free float | Resources | Cost | Actual cost | Mapping Sheet Activity ID | JEDDAH 1 - Area Name |
| --- | --- | --- | --- | --- | --- | --- | --- | --- | --- | --- | --- | --- | --- | --- | --- | --- | --- |
|  | 13 | **Landscape** |  | 2027-11-08 | 2027-12-09 |  |  |  |  |  |  |  |  |  |  |  |  |
| CON-LEG101-LR-4600 |  | Site preparation for Planting Area [Local – 01 Segment-03] | 9d | 2027-11-08 | 2027-11-18 | CON-LEG101-LR-4810, CON-LEG101-EN-3370, CON-LEG101-EN-3440 |  |  |  |  | -44.65d | 0d | Ref. SH-01, Golden daisy bush euryops pectinatus [61.07]; Loader [48 h]; Water Tanker [48 h]; Compactor [48 h]; Labor [150 h]; Skilled Labor [50 h]; Driver [50 h]; Eq. Operator [100 h] | 6,717.7 |  | A17360 | Landsca |
| CON-LEG101-LR-4670 |  | Placing Agricutural Soil [Local – 01 Segment-03] | 9d | 2027-11-18 | 2027-11-29 | CON-LEG101-LR-4600, CON-LEG101-EN-3380 |  |  |  |  | -44.65d | 0d | Ref. SH-01, Golden daisy bush euryops pectinatus [61.07]; Loader [48 h]; Water Tanker [48 h]; Labor [200 h]; Driver [50 h]; Eq. Operator [50 h] | 6,717.7 |  | A17460 | Landsca |
| CON-LEG101-LR-4740 |  | Planting Shrubs And Ground Cover [Local – 01 Segment-03] | 9d | 2027-11-29 | 2027-12-09 | CON-LEG101-LR-4670, CON-LEG101-EN-3390, CON-LEG101-PR-3060 |  |  |  |  | -44.65d | 124.35d | Ref. SH-01, Golden daisy bush euryops pectinatus [183.21]; Labor [150 h] | 20,153.1 |  | A17560 | Landsca |
|  | 3 | **Local – 02** |  | 2026-10-24 | 2027-12-16 |  |  |  |  |  |  |  |  |  |  |  |  |
|  | 3 | **Irrigation Works** |  | 2026-10-24 | 2027-11-22 |  |  |  |  |  |  |  |  |  |  |  |  |
|  | 1 | **Secondary Irrigation** |  | 2026-10-24 | 2027-11-22 |  |  |  |  |  |  |  |  |  |  |  |  |
|  | 1 | **Pipe Work** |  | 2026-10-24 | 2027-11-11 |  |  |  |  |  |  |  |  |  |  |  |  |
| CON-LEG101-LR-4900 |  | Excavation for Secondary Irrigation [Local – 02 ] | 4d | 2026-10-24 A | 2027-10-13 | CON-LEG101-LR-6210, CON-LEG101-LR-7430, CON-LEG101-EN-3340, CON-LEG101-EN-3440, CON-LEG101-LR-4890 | 50% | 2d | 2027-12-13 | 2027-12-18 | -50.65d | 0d | Pipe line O.D 50 mm PN 10, in depth 0 to 1.5 m [1.34]; Pipe line O.D 32 mm PN 10, in depth 0 to 1.5 m [0.8]; Excavator [48 h]; Water Tanker [48 h]; Truck [96 h]; Crane [48 h]; Labor [200 h]; Driver [150 h]; Eq. Operator [100 h] | 412 | 206 | A17860 | Landsca |
| CON-LEG101-LR-4970 |  | Sand bedding for Secondary Irrigation [Local – 02 ] | 4d | 2026-10-25 A | 2027-10-16 | CON-LEG101-LR-4900 | 50% | 2d | 2027-12-18 | 2027-12-22 | -50.65d | 0d | Loader [48 h]; Truck [48 h]; Driver [50 h]; Eq. Operator [50 h] |  |  | A17960 | Landsca |
| CON-LEG101-LR-5040 |  | Installation of Pipe for Secondary Irrigation [Local – 02 ] | 4d | 2026-10-26 A | 2027-10-18 | CON-LEG101-PR-3980, CON-LEG101-LR-4970, CON-LEG101-PR-3940 | 50% | 2d | 2027-12-22 | 2027-12-27 | -50.65d | 0d | Pipe line O.D 50 mm PN 10, in depth 0 to 1.5 m [4.02]; Pipe line O.D 32 mm PN 10, in depth 0 to 1.5 m [2.41]; Excavator [48 h]; Crane [48 h]; Labor [150 h]; Skilled Labor [100 h]; Eq. Operator [100 h]; Plumber [50 h]; Pipe Fitter [50 h] | 1,237.8 | 618.9 | A18060 | Landsca |
| CON-LEG101-LR-5110 |  | Sand Surround for Secondary Irrigation [Local – 02 ] | 8d | 2026-10-27 A | 2027-10-23 | CON-LEG101-LR-5040 | 50% | 4d | 2027-12-27 | 2028-01-05 | -20.15d | 0d | Loader [48 h]; Truck [48 h]; Driver [50 h]; Eq. Operator [50 h] |  |  | A18160 | Landsca |
| CON-LEG101-LR-5180 |  | Installation of Micron Marker Magnetic Tape [Local – 02 ] | 8d | 2026-10-28 A | 2027-10-27 | CON-LEG101-LR-5110 | 50% | 4d | 2028-01-05 | 2028-01-15 | -20.15d | 0d | Labor [100 h] |  |  | A18260 | Landsca |
| CON-LEG101-LR-5240 |  | Backfilling to Subgrade Elevation [Local – 02 ] | 10d | 2026-10-29 A | 2027-11-02 | CON-LEG101-LR-5180, CON-LEG101-EN-3440 | 50% | 5d | 2028-01-15 | 2028-01-26 | -20.15d | 0d | Pipe line O.D 50 mm PN 10, in depth 0 to 1.5 m [1.34]; Pipe line O.D 32 mm PN 10, in depth 0 to 1.5 m [0.8]; Excavator [48 h]; Water Tanker [48 h]; Road Roller [48 h]; Bucket [48 h]; Compactor [48 h]; Labor [100 h]; Driver [50 h]; Eq. Operator [200 h] | 412 | 206 | A18360 | Landsca |
| CON-LEG101-LR-5440 |  | Installation of tubing for risers connections from laterals [Local – 02 ] | 15d | 2026-10-31 A | 2027-11-11 | CON-LEG101-LR-5240, CON-LEG101-PR-2770 | 50% | 7.5d | 2028-01-26 | 2028-02-13 | -20.15d | 148.85d | Pipe line O.D 25 mm PN 10, in depth 0 to 1.5 m [34.5]; Supply and installation of 16 mm dia (O.D.) linear low density polyethylene tubing including in line P.C. emitters, accessories, stakes, takeoff /risers connections from laterals, and all requirements needed to finish work as per drawings (In line dripper [916.06]; Excavator [48 h]; Labor [50 h]; Skilled Labor [100 h]; Eq. Operator [50 h]; Pipe Fitter [50 h] | 39,402.4 | 19,701.2 | A18840 | Landsca |
|  | 2 | **Valves and Controller** |  | 2027-10-18 | 2027-11-22 |  |  |  |  |  |  |  |  |  |  |  |  |
| CON-LEG101-LR-5280 |  | Installation of Electrical Solenoid Valve [Local – 02 ] | 5d | 2027-10-18 | 2027-10-24 | CON-LEG101-LR-5040, CON-LEG101-PR-3020 |  |  |  |  | -50.65d | 0d | Supply and installation of Electrical Solenoid Valve ( 1.5") inside PVC box with all accessories( pressure regulator module, manual bleeding, expedient for TSE water, in line filter, manual valve, valve box with cover, and all other accessories necessary [0.67]; Excavator [48 h]; Labor [100 h]; Skilled Labor [50 h]; Eq. Operator [50 h]; Pipe Fitter [50 h] | 5,025 |  | A18480 | Landsca |
| CON-LEG101-LR-5320 |  | Installation of quick coupler valve [Local – 02 ] | 5d | 2027-10-24 | 2027-10-30 | CON-LEG101-LR-5280, CON-LEG101-PR-3030 |  |  |  |  | -50.65d | 0d | Supply and installation of 1" quick coupler valve inside PVC box [0.67]; Excavator [48 h]; Labor [100 h]; Skilled Labor [50 h]; Eq. Operator [50 h]; Pipe Fitter [50 h] | 3,015 |  | A18580 | Landsca |
| CON-LEG101-LR-5380 |  | Installation of a Flush valve [Local – 02 ] | 4d | 2027-10-30 | 2027-11-03 | CON-LEG101-PR-2760, CON-LEG101-LR-5320, CON-LEG101-PR-3110 |  |  |  |  | -50.65d | 0d | "Supply and installation of a flush valve at the end of ½-inch drip irrigation lines, including all necessary accessories such as protective box and fittings, to complete the work as required and in accordance with the supervising engineer’s instructions. [3.35]; Excavator [48 h]; Labor [100 h]; Skilled Labor [50 h]; Eq. Operator [50 h]; Pipe Fitter [50 h] | 6,700 |  | A18720 | Landsca |
| CON-LEG101-LR-5490 |  | Install single station decoder for valve connection [Local – 02 ] | 7d | 2027-11-03 | 2027-11-11 | CON-LEG101-PR-2830, CON-LEG101-LR-5380, CON-LEG101-PR-3150 |  |  |  |  | -50.65d | 0d | Supply and install single station decoder for valve connection to field controller including waterproof connectors and all other accessories necessary to complete the works in accordance with specifications and drawings (Decoder Single station ). [1.34]; Excavator [48 h]; Labor [100 h]; Skilled Labor [50 h]; Eq. Operator [50 h]; Pipe Fitter [50 h] | 6,700 |  | A18980 | Landsca |
| CON-LEG101-LR-5550 |  | Installation of Decoder cables 12 AWG between valves and controllers [Local – 02 ] | 9d | 2027-11-11 | 2027-11-22 | CON-LEG101-PR-2790, CON-LEG101-LR-5490, CON-LEG101-PR-3050 |  |  |  |  | -50.65d | 0d | Supply and installation of Decoder cables 12 AWG between valves and controllers, The cables shall be pulled through 32? UPVC conduit and inspection 10" round valve box every 100 meters, as per standard specification and drawings [108.04]; Excavator [48 h]; Labor [100 h]; Skilled Labor [50 h]; Eq. Operator [50 h]; Pipe Fitter [50 h] | 6,482.4 |  | A19100 | Landsca |
|  | 14 | **Curbs and edging** |  | 2027-11-22 | 2027-11-25 |  |  |  |  |  |  |  |  |  |  |  |  |
| CON-LEG101-LR-4830 |  | Installation of Curbs and edging [Local – 02 ] | 3d | 2027-11-22 | 2027-11-25 | CON-LEG101-LR-5550, CON-LEG101-PR-3070, CON-LEG101-EN-3400 |  |  |  |  | -50.65d | 0d | Planting curb edge, size 500 x 250 x 100 mm. [11.39]; Labor [100 h]; Skilled Labor [100 h] | 1,366.8 |  | A17700 | Landsca |
|  | 13 | **Landscape** |  | 2027-11-25 | 2027-12-16 |  |  |  |  |  |  |  |  |  |  |  |  |
| CON-LEG101-LR-4610 |  | Site preparation for Planting Area [Local – 02 ] | 6d | 2027-11-25 | 2027-12-02 | CON-LEG101-LR-4830, CON-LEG101-EN-3370, CON-LEG101-EN-3440 |  |  |  |  | -50.65d | 0d | Ref. SH-01, Golden daisy bush euryops pectinatus [61.07]; Loader [48 h]; Water Tanker [48 h]; Compactor [48 h]; Labor [150 h]; Skilled Labor [50 h]; Driver [50 h]; Eq. Operator [100 h] | 6,717.7 |  | A17370 | Landsca |
| CON-LEG101-LR-4680 |  | Placing Agricutural Soil [Local – 02 ] | 6d | 2027-12-02 | 2027-12-09 | CON-LEG101-LR-4610, CON-LEG101-EN-3380 |  |  |  |  | -50.65d | 0d | Ref. SH-01, Golden daisy bush euryops pectinatus [61.07]; Loader [48 h]; Water Tanker [48 h]; Labor [200 h]; Driver [50 h]; Eq. Operator [50 h] | 6,717.7 |  | A17470 | Landsca |
| CON-LEG101-LR-4750 |  | Planting Shrubs And Ground Cover [Local – 02 ] | 6d | 2027-12-09 | 2027-12-16 | CON-LEG101-LR-4680, CON-LEG101-EN-3390, CON-LEG101-PR-3060 |  |  |  |  | -50.65d | 118.35d | Ref. SH-01, Golden daisy bush euryops pectinatus [183.21]; Labor [150 h] | 20,153.1 |  | A17570 | Landsca |

| ID | WBS | Activity | Duration | Start | Finish | Predecessors | Complete | Remaining | Planned start | Planned finish | Total float | Free float | Resources | Cost | Actual cost | Mapping Sheet Activity ID | JEDDAH 1 - Area Name |
| --- | --- | --- | --- | --- | --- | --- | --- | --- | --- | --- | --- | --- | --- | --- | --- | --- | --- |
|  | 5 | **Local – 04** |  | 2027-10-27 | 2027-12-29 |  |  |  |  |  |  |  |  |  |  |  |  |
|  | 2 | **Irrigation Works** |  | 2027-10-27 | 2027-12-15 |  |  |  |  |  |  |  |  |  |  |  |  |
|  | 1 | **Secondary Irrigation** |  | 2027-10-27 | 2027-12-15 |  |  |  |  |  |  |  |  |  |  |  |  |
|  | 1 | **Pipe Work** |  | 2027-10-27 | 2027-11-29 |  |  |  |  |  |  |  |  |  |  |  |  |
| CON-LEG101-LR-4910 |  | Excavation for Secondary Irrigation [Local – 04 ] | 3d | 2027-10-27 | 2027-10-30 | CON-LEG101-LR-6230, CON-LEG101-LR-7450, CON-LEG101-EN-3340, CON-LEG101-EN-3440, CON-LEG101-LR-4900 SS |  |  |  |  | -62d | 0d | Pipe line O.D 50 mm PN 10, in depth 0 to 1.5 m [1.34]; Pipe line O.D 32 mm PN 10, in depth 0 to 1.5 m [0.8]; Excavator [48 h]; Water Tanker [48 h]; Truck [96 h]; Crane [48 h]; Labor [200 h]; Driver [150 h]; Eq. Operator [100 h] | 412 |  | A17870 | Landsca |
| CON-LEG101-LR-4980 |  | Sand bedding for Secondary Irrigation [Local – 04 ] | 6d | 2027-10-31 | 2027-11-06 | CON-LEG101-LR-4910 |  |  |  |  | -62d | 0d | Loader [48 h]; Truck [48 h]; Driver [50 h]; Eq. Operator [50 h] |  |  | A17970 | Landsca |
| CON-LEG101-LR-5050 |  | Installation of Pipe for Secondary Irrigation [Local – 04 ] | 8d | 2027-11-07 | 2027-11-15 | CON-LEG101-PR-3980, CON-LEG101-LR-4980, CON-LEG101-PR-3940 |  |  |  |  | -62d | 0d | Pipe line O.D 50 mm PN 10, in depth 0 to 1.5 m [4.02]; Pipe line O.D 32 mm PN 10, in depth 0 to 1.5 m [2.41]; Excavator [48 h]; Crane [48 h]; Labor [150 h]; Skilled Labor [100 h]; Eq. Operator [100 h]; Plumber [50 h]; Pipe Fitter [50 h] | 1,237.8 |  | A18070 | Landsca |
| CON-LEG101-LR-5120 |  | Sand Surround for Secondary Irrigation [Local – 04 ] | 3d | 2027-11-16 | 2027-11-18 | CON-LEG101-LR-5050 |  |  |  |  | -62d | 0d | Loader [48 h]; Truck [48 h]; Driver [50 h]; Eq. Operator [50 h] |  |  | A18170 | Landsca |
| CON-LEG101-LR-5190 |  | Installation of Micron Marker Magnetic Tape [Local – 04 ] | 5d | 2027-11-20 | 2027-11-24 | CON-LEG101-LR-5120 |  |  |  |  | -62d | 0d | Labor [100 h] |  |  | A18270 | Landsca |
| CON-LEG101-LR-5250 |  | Backfilling to Subgrade Elevation [Local – 04 ] | 2d | 2027-11-25 | 2027-11-27 | CON-LEG101-LR-5190, CON-LEG101-EN-3440 |  |  |  |  | -62d | 0d | Pipe line O.D 50 mm PN 10, in depth 0 to 1.5 m [1.34]; Pipe line O.D 32 mm PN 10, in depth 0 to 1.5 m [0.8]; Excavator [48 h]; Water Tanker [48 h]; Road Roller [48 h]; Bucket [48 h]; Compactor [48 h]; Labor [100 h]; Driver [50 h]; Eq. Operator [200 h] | 412 |  | A18370 | Landsca |
| CON-LEG101-LR-5450 |  | Installation of tubing for risers connections from laterals [Local – 04 ] | 2d | 2027-11-28 | 2027-11-29 | CON-LEG101-LR-5250, CON-LEG101-PR-2770 |  |  |  |  | -62d | 0d | Pipe line O.D 25 mm PN 10, in depth 0 to 1.5 m [34.51]; Supply and installation of 16 mm dia (O.D.) linear low density polyethylene tubing including in line P.C. emitters, accessories, stakes, takeoff /risers connections from laterals, and all requirements needed to finish work as per drawings (In line dripper [916.06]; Excavator [48 h]; Labor [50 h]; Skilled Labor [100 h]; Eq. Operator [50 h]; Pipe Fitter [50 h] | 39,403.2 |  | A18850 | Landsca |
|  | 2 | **Valves and Controller** |  | 2027-11-16 | 2027-12-15 |  |  |  |  |  |  |  |  |  |  |  |  |
| CON-LEG101-LR-5290 |  | Installation of Electrical Solenoid Valve [Local – 04 ] | 6d | 2027-11-16 | 2027-11-22 | CON-LEG101-LR-5050, CON-LEG101-PR-3020 |  |  |  |  | -62d | 0d | Excavator [48 h]; Labor [100 h]; Skilled Labor [50 h]; Eq. Operator [50 h]; Pipe Fitter [50 h] |  |  | A18490 | Landsca |
| CON-LEG101-LR-5330 |  | Installation of quick coupler valve [Local – 04 ] | 6d | 2027-11-23 | 2027-11-29 | CON-LEG101-LR-5290, CON-LEG101-PR-3030 |  |  |  |  | -62d | 0d | Excavator [48 h]; Labor [100 h]; Skilled Labor [50 h]; Eq. Operator [50 h]; Pipe Fitter [50 h] |  |  | A18590 | Landsca |
| CON-LEG101-LR-5390 |  | Installation of a Flush valve [Local – 04 ] | 5d | 2027-11-30 | 2027-12-05 | CON-LEG101-PR-2760, CON-LEG101-LR-5330, CON-LEG101-PR-3110, CON-LEG101-LR-5450 |  |  |  |  | -62d | 0d | "Supply and installation of a flush valve at the end of ½-inch drip irrigation lines, including all necessary accessories such as protective box and fittings, to complete the work as required and in accordance with the supervising engineer’s instructions. [3.35]; Excavator [48 h]; Labor [100 h]; Skilled Labor [50 h]; Eq. Operator [50 h]; Pipe Fitter [50 h] | 6,700 |  | A18730 | Landsca |
| CON-LEG101-LR-5500 |  | Install single station decoder for valve connection [Local – 04 ] | 7d | 2027-12-06 | 2027-12-13 | CON-LEG101-PR-2830, CON-LEG101-LR-5390, CON-LEG101-PR-3150 |  |  |  |  | -62d | 0d | Excavator [48 h]; Labor [100 h]; Skilled Labor [50 h]; Eq. Operator [50 h]; Pipe Fitter [50 h] |  |  | A18990 | Landsca |
| CON-LEG101-LR-5560 |  | Installation of Decoder cables 12 AWG between valves and controllers [Local – 04 ] | 2d | 2027-12-14 | 2027-12-15 | CON-LEG101-PR-2790, CON-LEG101-LR-5500, CON-LEG101-PR-3050 |  |  |  |  | -62d | 0d | Supply and installation of Decoder cables 12 AWG between valves and controllers, The cables shall be pulled through 32? UPVC conduit and inspection 10" round valve box every 100 meters, as per standard specification and drawings [108.04]; Excavator [48 h]; Labor [100 h]; Skilled Labor [50 h]; Eq. Operator [50 h]; Pipe Fitter [50 h] | 6,482.4 |  | A19110 | Landsca |
|  | 14 | **Curbs and edging** |  | 2027-12-16 | 2027-12-19 |  |  |  |  |  |  |  |  |  |  |  |  |
| CON-LEG101-LR-4840 |  | Installation of Curbs and edging [Local – 04 ] | 3d | 2027-12-16 | 2027-12-19 | CON-LEG101-LR-5560, CON-LEG101-PR-3070, CON-LEG101-EN-3400 |  |  |  |  | -62d | 0d | Planting curb edge, size 500 x 250 x 100 mm. [11.39]; Labor [100 h]; Skilled Labor [100 h] | 1,366.8 |  | A17710 | Landsca |
|  | 13 | **Landscape** |  | 2027-12-20 | 2027-12-29 |  |  |  |  |  |  |  |  |  |  |  |  |
| CON-LEG101-LR-4620 |  | Site preparation for Planting Area [Local – 04 ] | 3d | 2027-12-20 | 2027-12-22 | CON-LEG101-LR-4840, CON-LEG101-EN-3370, CON-LEG101-EN-3440 |  |  |  |  | -62d | 0d | Ref. SH-01, Golden daisy bush euryops pectinatus [61.07]; Loader [48 h]; Water Tanker [48 h]; Compactor [48 h]; Labor [150 h]; Skilled Labor [50 h]; Driver [50 h]; Eq. Operator [100 h] | 6,717.7 |  | A17380 | Landsca |
| CON-LEG101-LR-4690 |  | Placing Agricutural Soil [Local – 04 ] | 3d | 2027-12-23 | 2027-12-26 | CON-LEG101-LR-4620, CON-LEG101-EN-3380 |  |  |  |  | -62d | 0d | Ref. SH-01, Golden daisy bush euryops pectinatus [61.07]; Loader [48 h]; Water Tanker [48 h]; Labor [200 h]; Driver [50 h]; Eq. Operator [50 h] | 6,717.7 |  | A17480 | Landsca |
| CON-LEG101-LR-4760 |  | Planting Shrubs And Ground Cover [Local – 04 ] | 3d | 2027-12-27 | 2027-12-29 | CON-LEG101-LR-4690, CON-LEG101-EN-3390, CON-LEG101-PR-3060 |  |  |  |  | -62d | 107d | Ref. SH-01, Golden daisy bush euryops pectinatus [183.21]; Labor [150 h] | 20,153.1 |  | A17580 | Landsca |
|  | 6 | **Local – 06** |  | 2026-10-31 | 2027-12-23 |  |  |  |  |  |  |  |  |  |  |  |  |
|  | 2 | **Irrigation Works** |  | 2026-10-31 | 2027-12-06 |  |  |  |  |  |  |  |  |  |  |  |  |
|  | 1 | **Secondary Irrigation** |  | 2026-10-31 | 2027-12-06 |  |  |  |  |  |  |  |  |  |  |  |  |
|  | 1 | **Pipe Work** |  | 2026-10-31 | 2027-11-08 |  |  |  |  |  |  |  |  |  |  |  |  |
| CON-LEG101-LR-4920 |  | Excavation for Secondary Irrigation [Local – 06 ] | 3d | 2026-10-31 A | 2027-10-28 | CON-LEG101-LR-6250, CON-LEG101-LR-7470, CON-LEG101-EN-3340, CON-LEG101-EN-3440, CON-LEG101-LR-4910 SS | 40% | 1.8d | 2027-12-13 | 2027-12-16 | -56.2d | 0d | Pipe line O.D 50 mm PN 10, in depth 0 to 1.5 m [1.34]; Pipe line O.D 32 mm PN 10, in depth 0 to 1.5 m [0.8]; Excavator [48 h]; Water Tanker [48 h]; Truck [96 h]; Crane [48 h]; Labor [200 h]; Driver [150 h]; Eq. Operator [100 h] | 412 | 164.8 | A17880 | Landsca |
| CON-LEG101-LR-5060 |  | Installation of Pipe for Secondary Irrigation [Local – 06 ] | 3d | 2026-11-01 A | 2027-10-31 | CON-LEG101-LR-4920, CON-LEG101-PR-3980, CON-LEG101-PR-3940 | 40% | 1.8d | 2027-12-16 | 2027-12-20 | -56.2d | 0d | Pipe line O.D 50 mm PN 10, in depth 0 to 1.5 m [4.02]; Pipe line O.D 32 mm PN 10, in depth 0 to 1.5 m [2.41]; Excavator [48 h]; Crane [48 h]; Labor [150 h]; Skilled Labor [100 h]; Eq. Operator [100 h]; Plumber [50 h]; Pipe Fitter [50 h] | 1,237.8 | 495.12 | A18080 | Landsca |
| CON-LEG101-LR-5260 |  | Backfilling to Subgrade Elevation [Local – 06 ] | 3d | 2026-11-02 A | 2027-11-02 | CON-LEG101-LR-5060, CON-LEG101-EN-3440 | 40% | 1.8d | 2027-12-20 | 2027-12-23 | -56.2d | 0d | Pipe line O.D 50 mm PN 10, in depth 0 to 1.5 m [1.34]; Pipe line O.D 32 mm PN 10, in depth 0 to 1.5 m [0.8]; Excavator [48 h]; Water Tanker [48 h]; Road Roller [48 h]; Bucket [48 h]; Compactor [48 h]; Labor [100 h]; Driver [50 h]; Eq. Operator [200 h] | 412 | 164.8 | A18380 | Landsca |
| CON-LEG101-LR-5460 |  | Installation of tubing for risers connections from laterals [Local – 06 ] | 8d | 2026-11-02 A | 2027-11-08 | CON-LEG101-LR-5260, CON-LEG101-PR-2770 | 40% | 4.8d | 2027-12-23 | 2028-01-02 | -56.2d | 0d | Pipe line O.D 25 mm PN 10, in depth 0 to 1.5 m [34.51]; Supply and installation of 16 mm dia (O.D.) linear low density polyethylene tubing including in line P.C. emitters, accessories, stakes, takeoff /risers connections from laterals, and all requirements needed to finish work as per drawings (In line dripper [916.06]; Excavator [48 h]; Labor [50 h]; Skilled Labor [100 h]; Eq. Operator [50 h]; Pipe Fitter [50 h] | 39,403.2 | 15,761.28 | A18860 | Landsca |

| ID | WBS | Activity | Duration | Start | Finish | Predecessors | Total float | Free float | Resources | Cost | Mapping Sheet Activity ID | JEDDAH 1 - Area Name |
| --- | --- | --- | --- | --- | --- | --- | --- | --- | --- | --- | --- | --- |
|  | 2 | **Valves and Controller** |  | 2027-11-08 | 2027-12-06 |  |  |  |  |  |  |  |
| CON-LEG101-LR-5300 |  | Installation of Electrical Solenoid Valve [Local – 06 ] | 4d | 2027-11-08 | 2027-11-13 | CON-LEG101-LR-5060, CON-LEG101-PR-3020, CON-LEG101-LR-5460 | -56.2d | 0d | Supply and installation of Electrical Solenoid Valve ( 1") inside PVC box with all accessories( pressure regulator module, manual bleeding, expedient for TSE water, in line filter, manual valve, valve box with cover, and all other accessories necessary to [0.67]; Excavator [48 h]; Labor [100 h]; Skilled Labor [50 h]; Eq. Operator [50 h]; Pipe Fitter [50 h] | 4,355 | A18500 | Landsca |
| CON-LEG101-LR-5340 |  | Installation of quick coupler valve [Local – 06 ] | 4d | 2027-11-13 | 2027-11-17 | CON-LEG101-LR-5300, CON-LEG101-PR-3030 | -56.2d | 0d | Supply and installation of 1" quick coupler valve inside PVC box [0.67]; Excavator [48 h]; Labor [100 h]; Skilled Labor [50 h]; Eq. Operator [50 h]; Pipe Fitter [50 h] | 3,015 | A18600 | Landsca |
| CON-LEG101-LR-5400 |  | Installation of a Flush valve [Local – 06 ] | 5d | 2027-11-17 | 2027-11-23 | CON-LEG101-PR-2760, CON-LEG101-LR-5340, CON-LEG101-PR-3110 | -56.2d | 0d | "Supply and installation of a flush valve at the end of ½-inch drip irrigation lines, including all necessary accessories such as protective box and fittings, to complete the work as required and in accordance with the supervising engineer’s instructions. [3.35]; Excavator [48 h]; Labor [100 h]; Skilled Labor [50 h]; Eq. Operator [50 h]; Pipe Fitter [50 h] | 6,700 | A18740 | Landsca |
| CON-LEG101-LR-5510 |  | Install single station decoder for valve connection [Local – 06 ] | 5d | 2027-11-23 | 2027-11-29 | CON-LEG101-PR-2830, CON-LEG101-LR-5400, CON-LEG101-PR-3150 | -56.2d | 0d | Supply and install single station decoder for valve connection to field controller including waterproof connectors and all other accessories necessary to complete the works in accordance with specifications and drawings (Decoder Single station ). [0.67]; Excavator [48 h]; Labor [100 h]; Skilled Labor [50 h]; Eq. Operator [50 h]; Pipe Fitter [50 h] | 3,350 | A19000 | Landsca |
| CON-LEG101-LR-5570 |  | Installation of Decoder cables 12 AWG between valves and controllers [Local – 06 ] | 6d | 2027-11-29 | 2027-12-06 | CON-LEG101-PR-2790, CON-LEG101-LR-5510, CON-LEG101-PR-3050 | -56.2d | 0d | Supply and installation of Decoder cables 12 AWG between valves and controllers, The cables shall be pulled through 32? UPVC conduit and inspection 10" round valve box every 100 meters, as per standard specification and drawings [108.04]; Excavator [48 h]; Labor [100 h]; Skilled Labor [50 h]; Eq. Operator [50 h]; Pipe Fitter [50 h] | 6,482.4 | A19120 | Landsca |
|  | 14 | **Curbs and edging** |  | 2027-12-06 | 2027-12-09 |  |  |  |  |  |  |  |
| CON-LEG101-LR-4850 |  | Installation of Curbs and edging [Local – 06 ] | 3d | 2027-12-06 | 2027-12-09 | CON-LEG101-LR-5570, CON-LEG101-PR-3070, CON-LEG101-EN-3400 | -56.2d | 0d | Planting curb edge, size 500 x 250 x 100 mm. [11.39]; Labor [100 h]; Skilled Labor [100 h] | 1,366.8 | A17720 | Landsca |
|  | 13 | **Landscape** |  | 2027-12-09 | 2027-12-23 |  |  |  |  |  |  |  |
| CON-LEG101-LR-4630 |  | Site preparation for Planting Area [Local – 06 ] | 4d | 2027-12-09 | 2027-12-14 | CON-LEG101-LR-4850, CON-LEG101-EN-3370, CON-LEG101-EN-3440 | -56.2d | 0d | Ref. SH-01, Golden daisy bush euryops pectinatus [61.07]; Loader [48 h]; Water Tanker [48 h]; Compactor [48 h]; Labor [150 h]; Skilled Labor [50 h]; Driver [50 h]; Eq. Operator [100 h] | 6,717.7 | A17390 | Landsca |
| CON-LEG101-LR-4700 |  | Placing Agricutural Soil [Local – 06 ] | 4d | 2027-12-14 | 2027-12-19 | CON-LEG101-LR-4630, CON-LEG101-EN-3380 | -56.2d | 0d | Ref. SH-01, Golden daisy bush euryops pectinatus [61.07]; Loader [48 h]; Water Tanker [48 h]; Labor [200 h]; Driver [50 h]; Eq. Operator [50 h] | 6,717.7 | A17490 | Landsca |
| CON-LEG101-LR-4770 |  | Planting Shrubs And Ground Cover [Local – 06 ] | 4d | 2027-12-19 | 2027-12-23 | CON-LEG101-LR-4700, CON-LEG101-EN-3390, CON-LEG101-PR-3060 | -56.2d | 112.8d | Ref. SH-01, Golden daisy bush euryops pectinatus [183.21]; Labor [150 h] | 20,153.1 | A17590 | Landsca |
|  | 1 | **Roundabout - 01 (L01 & L04)** |  | 2027-10-27 | 2028-04-22 |  |  |  |  |  |  |  |
|  | 1 | **Irrigation Works** |  | 2027-10-27 | 2028-02-15 |  |  |  |  |  |  |  |
|  | 1 | **Secondary Irrigation** |  | 2027-10-27 | 2028-02-15 |  |  |  |  |  |  |  |
|  | 1 | **Pipe Work** |  | 2027-10-27 | 2028-02-15 |  |  |  |  |  |  |  |
| CON-LEG101-RA-1120 |  | Excavation for Secondary Irrigation [Roundabout : 01 ] | 11d | 2027-10-27 | 2027-11-08 | CON-LEG101-LR-6230, CON-LEG101-LR-6180, CON-LEG101-SD-1000, CON-LEG101-SD-1010, CON-LEG101-SD-1020, CON-LEG101-SD-1030, CON-LEG101-LR-4870, CON-LEG101-EN-3340, CON-LEG101-EN-3440 | -169d | 0d | Pipe line O.D 50 mm PN 10, in depth 0 to 1.5 m [5.36]; Pipe line O.D 32 mm PN 10, in depth 0 to 1.5 m [3.22]; Excavator [48 h]; Water Tanker [200 h]; Truck [200 h]; Crane [48 h]; Labor [400 h]; Driver [450 h]; Eq. Operator [500 h] | 1,651.6 | A17890 | Landsca |
| CON-LEG101-RA-1150 |  | Sand bedding for Secondary Irrigation [Roundabout : 01 ] | 11d | 2027-11-09 | 2027-11-21 | CON-LEG101-RA-1120 | -169d | 0d | Loader [48 h]; Truck [158.73 h]; Driver [509.09 h]; Eq. Operator [509.09 h] |  | A17990 | Landsca |
| CON-LEG101-RA-1180 |  | Installation of Pipe for Secondary Irrigation [Roundabout : 01 ] | 11d | 2027-11-22 | 2027-12-04 | CON-LEG101-PR-3980, CON-LEG101-RA-1150, CON-LEG101-PR-3940 | -169d | 0d | Pipe line O.D 50 mm PN 10, in depth 0 to 1.5 m [16.08]; Pipe line O.D 32 mm PN 10, in depth 0 to 1.5 m [9.65]; Excavator [48 h]; Crane [48 h]; Labor [300 h]; Skilled Labor [100 h]; Eq. Operator [100 h]; Plumber [50 h]; Pipe Fitter [50 h] | 4,953 | A18090 | Landsca |
| CON-LEG101-RA-1210 |  | Sand Surround for Secondary Irrigation [Roundabout : 01 ] | 14d | 2027-12-05 | 2027-12-20 | CON-LEG101-RA-1180 | -160d | 0d | Loader [48 h]; Truck [53.64 h]; Driver [50 h]; Eq. Operator [50 h] |  | A18190 | Landsca |
| CON-LEG101-RA-1240 |  | Installation of Micron Marker Magnetic Tape [Roundabout : 01 ] | 14d | 2027-12-21 | 2028-01-05 | CON-LEG101-RA-1210 | -160d | 0d | Labor [100 h] |  | A18290 | Landsca |
| CON-LEG101-RA-1270 |  | Backfilling to Subgrade Elevation [Roundabout : 01 ] | 14d | 2028-01-06 | 2028-01-22 | CON-LEG101-RA-1240, CON-LEG101-EN-3440 | -160d | 0d | Pipe line O.D 50 mm PN 10, in depth 0 to 1.5 m [5.36]; Pipe line O.D 32 mm PN 10, in depth 0 to 1.5 m [3.22]; Excavator [20 h]; Water Tanker [48 h]; Road Roller [48 h]; Bucket [48 h]; Compactor [48 h]; Labor [100 h]; Driver [50 h]; Eq. Operator [200 h] | 1,651.6 | A18390 | Landsca |
| CON-LEG101-RA-1390 |  | Installation of tubing for risers connections from laterals [Roundabout : 01 ] | 21d | 2028-01-23 | 2028-02-15 | CON-LEG101-RA-1270, CON-LEG101-PR-2770 | -160d | 0d | Pipe line O.D 25 mm PN 10, in depth 0 to 1.5 m [138.02]; Supply and installation of 16 mm dia (O.D.) linear low density polyethylene tubing including in line P.C. emitters, accessories, stakes, takeoff /risers connections from laterals, and all requirements needed to finish work as per drawings (In line dripper [3664.23]; Excavator [90.84 h]; Labor [100 h]; Skilled Labor [200 h]; Eq. Operator [100 h]; Pipe Fitter [100 h] | 157,610.8 | A18870 | Landsca |
|  | 2 | **Valves and Controller** |  | 2027-12-05 | 2028-01-30 |  |  |  |  |  |  |  |
| CON-LEG101-RA-1300 |  | Installation of Electrical Solenoid Valve [Roundabout : 01 ] | 5d | 2027-12-05 | 2027-12-09 | CON-LEG101-RA-1180, CON-LEG101-PR-3020 | -169d | 0d | Supply and installation of Electrical Solenoid Valve ( 1") inside PVC box with all accessories( pressure regulator module, manual bleeding, expedient for TSE water, in line filter, manual valve, valve box with cover, and all other accessories necessary to [0.67]; Excavator [48 h]; Labor [200 h]; Skilled Labor [50 h]; Eq. Operator [50 h]; Pipe Fitter [50 h] | 4,355 | A18510 | Landsca |
| CON-LEG101-RA-1330 |  | Installation of quick coupler valve [Roundabout : 01 ] | 5d | 2027-12-11 | 2027-12-15 | CON-LEG101-RA-1300, CON-LEG101-PR-3030 | -169d | 0d | Supply and installation of 1" quick coupler valve inside PVC box [0.67]; Excavator [48 h]; Labor [200 h]; Skilled Labor [50 h]; Eq. Operator [50 h]; Pipe Fitter [50 h] | 3,015 | A18610 | Landsca |
| CON-LEG101-RA-1360 |  | Installation of a Flush valve [Roundabout : 01 ] | 11d | 2027-12-16 | 2027-12-28 | CON-LEG101-PR-2760, CON-LEG101-RA-1330, CON-LEG101-PR-3110 | -169d | 0d | "Supply and installation of a flush valve at the end of ½-inch drip irrigation lines, including all necessary accessories such as protective box and fittings, to complete the work as required and in accordance with the supervising engineer’s instructions. [3.35]; Excavator [20 h]; Labor [100 h]; Skilled Labor [50 h]; Eq. Operator [400 h]; Pipe Fitter [50 h] | 6,700 | A18750 | Landsca |
| CON-LEG101-RA-1420 |  | Install single station decoder for valve connection [Roundabout : 01 ] | 14d | 2027-12-29 | 2028-01-13 | CON-LEG101-PR-2830, CON-LEG101-RA-1360, CON-LEG101-PR-3150 | -158d | 0d | Supply and install single station decoder for valve connection to field controller including waterproof connectors and all other accessories necessary to complete the works in accordance with specifications and drawings (Decoder Single station ). [0.67]; Excavator [20 h]; Labor [100 h]; Skilled Labor [50 h]; Eq. Operator [50 h]; Pipe Fitter [50 h] | 3,350 | A19010 | Landsca |
| A |  | Catch | 14d | 2028-01-15 | 2028-01-30 | CON-LEG101-PR-2790, CON-LEG101-RA-1420, CON-LEG101-PR-3050 | -158d | 0d | Supply and installation of Decoder cables 12 AWG between valves and controllers, The cables shall be pulled through 32? UPVC conduit and inspection 10" round valve box every 100 meters, as per standard specification and drawings [432.15]; Excavator [88.57 h]; Labor [200 h]; Skilled Labor [100 h]; Eq. Operator [100 h]; Pipe Fitter [100 h] | 25,929 | A19130 | Landsca |

| ID | WBS | Activity | Duration | Start | Finish | Predecessors | Total float | Free float | Resources | Cost | Mapping Sheet Activity ID | JEDDAH 1 - Area Name |
| --- | --- | --- | --- | --- | --- | --- | --- | --- | --- | --- | --- | --- |
|  | 3 | **Curbs and edging** |  | 2028-01-31 | 2028-02-13 |  |  |  |  |  |  |  |
| CON-LEG101-RA-1090 |  | Installation of Curbs and edging [Roundabout : 01 ] | 12d | 2028-01-31 | 2028-02-13 | A, CON-LEG101-PR-3070, CON-LEG101-EN-3400 | -158d | 2d | Planting curb edge, size 500 x 250 x 100 mm. [45.56]; Labor [100 h]; Skilled Labor [100 h] | 5,467.2 | A17730 | Landsca |
|  | 2 | **Landscape** |  | 2028-02-16 | 2028-04-22 |  |  |  |  |  |  |  |
| CON-LEG101-RA-1000 |  | Site preparation for Planting Area [Roundabout : 01 ] | 19d | 2028-02-16 | 2028-03-08 | CON-LEG101-RA-1090, CON-LEG101-EN-3370, CON-LEG101-EN-3440, CON-LEG101-RA-1390 | -160d | 0d | Ref. SH-01, Golden daisy bush euryops pectinatus [244.28]; Loader [48 h]; Water Tanker [48 h]; Compactor [48 h]; Labor [150 h]; Skilled Labor [50 h]; Driver [50 h]; Eq. Operator [100 h] | 26,870.8 | A17400 | Landsca |
| CON-LEG101-RA-1030 |  | Placing Agricutural Soil [Roundabout : 01 ] | 19d | 2028-03-09 | 2028-03-30 | CON-LEG101-RA-1000, CON-LEG101-EN-3380, CON-LEG101-MS-1010 | -160d | 0d | Ref. SH-01, Golden daisy bush euryops pectinatus [244.28]; Loader [48 h]; Water Tanker [48 h]; Labor [200 h]; Driver [50 h]; Eq. Operator [50 h] | 26,870.8 | A17500 | Landsca |
| CON-LEG101-RA-1060 |  | Planting Shrubs And Ground Cover [Roundabout : 01 ] | 19d | 2028-04-01 | 2028-04-22 | CON-LEG101-RA-1030, CON-LEG101-EN-3390, CON-LEG101-PR-3060, CON-LEG101-MS-1010 | -160d | 9d | Ref. SH-01, Golden daisy bush euryops pectinatus [732.85]; Labor [150 h] | 80,613.5 | A17600 | Landsca |
|  | 4 | **Roundabout - 02 (L01 & L03)** |  | 2027-12-29 | 2028-05-02 |  |  |  |  |  |  |  |
|  | 1 | **Irrigation Works** |  | 2027-12-29 | 2028-04-18 |  |  |  |  |  |  |  |
|  | 1 | **Secondary Irrigation** |  | 2027-12-29 | 2028-04-18 |  |  |  |  |  |  |  |
|  | 1 | **Pipe Work** |  | 2027-12-29 | 2028-04-18 |  |  |  |  |  |  |  |
| CON-LEG101-RA-1130 |  | Excavation for Secondary Irrigation [Roundabout : 02 ] | 11d | 2027-12-29 | 2028-01-10 | CON-LEG101-RA-1360, CON-LEG101-LR-6180, CON-LEG101-LR-6190, CON-LEG101-LR-6220, CON-LEG101-SD-1000, CON-LEG101-SD-1010, CON-LEG101-SD-1020, CON-LEG101-SD-1030, CON-LEG101-EN-3340, CON-LEG101-EN-3440, CON-LEG101-RA-1120 | -169d | 0d | Pipe line O.D 50 mm PN 10, in depth 0 to 1.5 m [5.36]; Pipe line O.D 32 mm PN 10, in depth 0 to 1.5 m [3.22]; Excavator [20 h]; Water Tanker [48 h]; Truck [20 h]; Crane [48 h]; Labor [200 h]; Driver [150 h]; Eq. Operator [100 h] | 1,651.6 | A17900 | Landsca |
| CON-LEG101-RA-1160 |  | Sand bedding for Secondary Irrigation [Roundabout : 02 ] | 11d | 2028-01-11 | 2028-01-23 | CON-LEG101-RA-1130 | -169d | 0d | Loader [48 h]; Truck [40.55 h]; Driver [50 h]; Eq. Operator [231.82 h] |  | A18000 | Landsca |
| CON-LEG101-RA-1190 |  | Installation of Pipe for Secondary Irrigation [Roundabout : 02 ] | 11d | 2028-01-24 | 2028-02-05 | CON-LEG101-PR-3980, CON-LEG101-RA-1160, CON-LEG101-PR-3940 | -169d | 0d | Pipe line O.D 50 mm PN 10, in depth 0 to 1.5 m [16.08]; Pipe line O.D 32 mm PN 10, in depth 0 to 1.5 m [9.65]; Excavator [48 h]; Crane [48 h]; Labor [150 h]; Skilled Labor [100 h]; Eq. Operator [100 h]; Plumber [50 h]; Pipe Fitter [50 h] | 4,953 | A18100 | Landsca |
| CON-LEG101-RA-1220 |  | Sand Surround for Secondary Irrigation [Roundabout : 02 ] | 14d | 2028-02-06 | 2028-02-21 | CON-LEG101-RA-1190 | -157d | 0d | Loader [48 h]; Truck [48 h]; Driver [50 h]; Eq. Operator [50 h] |  | A18200 | Landsca |
| CON-LEG101-RA-1250 |  | Installation of Micron Marker Magnetic Tape [Roundabout : 02 ] | 14d | 2028-02-22 | 2028-03-08 | CON-LEG101-RA-1220 | -157d | 0d | Labor [100 h] |  | A18300 | Landsca |
| CON-LEG101-RA-1280 |  | Backfilling to Subgrade Elevation [Roundabout : 02 ] | 14d | 2028-03-09 | 2028-03-25 | CON-LEG101-RA-1250, CON-LEG101-EN-3440 | -157d | 0d | Pipe line O.D 50 mm PN 10, in depth 0 to 1.5 m [5.36]; Pipe line O.D 32 mm PN 10, in depth 0 to 1.5 m [3.22]; Excavator [48 h]; Water Tanker [48 h]; Road Roller [48 h]; Bucket [48 h]; Compactor [48 h]; Labor [100 h]; Driver [50 h]; Eq. Operator [200 h] | 1,651.6 | A18400 | Landsca |
| CON-LEG101-RA-1400 |  | Installation of tubing for risers connections from laterals [Roundabout : 02 ] | 21d | 2028-03-26 | 2028-04-18 | CON-LEG101-RA-1280, CON-LEG101-PR-2770 | -157d | 12d | Pipe line O.D 25 mm PN 10, in depth 0 to 1.5 m [138.02]; Supply and installation of 16 mm dia (O.D.) linear low density polyethylene tubing including in line P.C. emitters, accessories, stakes, takeoff /risers connections from laterals, and all requirements needed to finish work as per drawings (In line dripper [3664.23]; Excavator [96 h]; Labor [100 h]; Skilled Labor [200 h]; Eq. Operator [100 h]; Pipe Fitter [100 h] | 157,610.8 | A18880 | Landsca |
|  | 2 | **Valves and Controller** |  | 2028-02-06 | 2028-03-25 |  |  |  |  |  |  |  |
| CON-LEG101-RA-1310 |  | Installation of Electrical Solenoid Valve [Roundabout : 02 ] | 5d | 2028-02-06 | 2028-02-10 | CON-LEG101-RA-1190, CON-LEG101-PR-3020 | -169d | 0d | Supply and installation of Electrical Solenoid Valve ( 1") inside PVC box with all accessories( pressure regulator module, manual bleeding, expedient for TSE water, in line filter, manual valve, valve box with cover, and all other accessories necessary to [0.67]; Excavator [48 h]; Labor [100 h]; Skilled Labor [50 h]; Eq. Operator [50 h]; Pipe Fitter [50 h] | 4,355 | A18520 | Landsca |
| CON-LEG101-RA-1340 |  | Installation of quick coupler valve [Roundabout : 02 ] | 5d | 2028-02-12 | 2028-02-16 | CON-LEG101-RA-1310, CON-LEG101-PR-3030 | -169d | 0d | Supply and installation of 1" quick coupler valve inside PVC box [0.67]; Excavator [48 h]; Labor [100 h]; Skilled Labor [50 h]; Eq. Operator [50 h]; Pipe Fitter [50 h] | 3,015 | A18620 | Landsca |
| CON-LEG101-RA-1370 |  | Installation of a Flush valve [Roundabout : 02 ] | 11d | 2028-02-17 | 2028-02-29 | CON-LEG101-PR-2760, CON-LEG101-RA-1340, CON-LEG101-PR-3110 | -169d | 0d | "Supply and installation of a flush valve at the end of ½-inch drip irrigation lines, including all necessary accessories such as protective box and fittings, to complete the work as required and in accordance with the supervising engineer’s instructions. [3.35]; Excavator [48 h]; Labor [100 h]; Skilled Labor [50 h]; Eq. Operator [50 h]; Pipe Fitter [50 h] | 6,700 | A18760 | Landsca |
| CON-LEG101-RA-1430 |  | Install single station decoder for valve connection [Roundabout : 02 ] | 7d | 2028-03-01 | 2028-03-08 | CON-LEG101-PR-2830, CON-LEG101-RA-1370, CON-LEG101-PR-3150 | -169d | 0d | Supply and install single station decoder for valve connection to field controller including waterproof connectors and all other accessories necessary to complete the works in accordance with specifications and drawings (Decoder Single station ). [0.67]; Excavator [48 h]; Labor [100 h]; Skilled Labor [50 h]; Eq. Operator [50 h]; Pipe Fitter [50 h] | 3,350 | A19020 | Landsca |
| CON-LEG101-RA-1460 |  | Installation of Decoder cables 12 AWG between valves and controllers [Roundabout : 02 ] | 14d | 2028-03-09 | 2028-03-25 | CON-LEG101-PR-2790, CON-LEG101-RA-1430, CON-LEG101-PR-3050 | -169d | 0d | Supply and installation of Decoder cables 12 AWG between valves and controllers, The cables shall be pulled through 32? UPVC conduit and inspection 10" round valve box every 100 meters, as per standard specification and drawings [432.15]; Excavator [96 h]; Labor [200 h]; Skilled Labor [100 h]; Eq. Operator [100 h]; Pipe Fitter [100 h] | 25,929 | A19140 | Landsca |
|  | 3 | **Curbs and edging** |  | 2028-03-26 | 2028-03-28 |  |  |  |  |  |  |  |
| CON-LEG101-RA-1100 |  | Installation of Curbs and edging [Roundabout : 02 ] | 3d | 2028-03-26 | 2028-03-28 | CON-LEG101-RA-1460, CON-LEG101-PR-3070, CON-LEG101-EN-3400 | -169d | 0d | Planting curb edge, size 500 x 250 x 100 mm. [45.56]; Labor [100 h]; Skilled Labor [100 h] | 5,467.2 | A17740 | Landsca |

| ID | WBS | Activity | Duration | Start | Finish | Predecessors | Complete | Remaining | Planned start | Planned finish | Total float | Free float | Resources | Cost | Actual cost | Mapping Sheet Activity ID | JEDDAH 1 - Area Name |
| --- | --- | --- | --- | --- | --- | --- | --- | --- | --- | --- | --- | --- | --- | --- | --- | --- | --- |
|  | 2 | **Landscape** |  | 2028-03-29 | 2028-05-02 |  |  |  |  |  |  |  |  |  |  |  |  |
| CON-LEG101-RA-1010 |  | Site preparation for Planting Area [Roundabout : 02 ] | 10d | 2028-03-29 | 2028-04-09 | CON-LEG101-RA-1100, CON-LEG101-EN-3370, CON-LEG101-EN-3440 |  |  |  |  | -169d | 0d | Ref. SH-01, Golden daisy bush euryops pectinatus [244.28]; Loader [48 h]; Water Tanker [48 h]; Compactor [48 h]; Labor [150 h]; Skilled Labor [50 h]; Driver [50 h]; Eq. Operator [100 h] | 26,870.8 |  | A17410 | Landsca |
| CON-LEG101-RA-1040 |  | Placing Agricutural Soil [Roundabout : 02 ] | 10d | 2028-04-10 | 2028-04-20 | CON-LEG101-RA-1010, CON-LEG101-EN-3380 |  |  |  |  | -169d | 0d | Ref. SH-01, Golden daisy bush euryops pectinatus [244.28]; Loader [48 h]; Water Tanker [48 h]; Labor [200 h]; Driver [50 h]; Eq. Operator [50 h] | 26,870.8 |  | A17510 | Landsca |
| CON-LEG101-RA-1070 |  | Planting Shrubs And Ground Cover [Roundabout : 02 ] | 10d | 2028-04-22 | 2028-05-02 | CON-LEG101-RA-1040, CON-LEG101-EN-3390, CON-LEG101-PR-3060 |  |  |  |  | -169d | 0d | Ref. SH-01, Golden daisy bush euryops pectinatus [732.85]; Labor [150 h] | 80,613.5 |  | A17610 | Landsca |
|  | 2 | **Roundabout - 03 (L03 & L05)** |  | 2026-10-25 | 2028-04-13 |  |  |  |  |  |  |  |  |  |  |  |  |
|  | 1 | **Irrigation Works** |  | 2026-10-25 | 2028-03-18 |  |  |  |  |  |  |  |  |  |  |  |  |
|  | 1 | **Secondary Irrigation** |  | 2026-10-25 | 2028-03-18 |  |  |  |  |  |  |  |  |  |  |  |  |
|  | 1 | **Pipe Work** |  | 2026-10-25 | 2028-02-28 |  |  |  |  |  |  |  |  |  |  |  |  |
| CON-LEG101-RA-1140 |  | Excavation for Secondary Irrigation [Roundabout : 03 ] | 11d | 2026-10-25 A | 2028-01-17 | CON-LEG101-LR-6220, CON-LEG101-LR-6240, CON-LEG101-SD-1000, CON-LEG101-SD-1010, CON-LEG101-SD-1020, CON-LEG101-SD-1030, CON-LEG101-EN-3340, CON-LEG101-EN-3440, CON-LEG101-RA-1130 | 50% | 5.5d | 2028-01-04 | 2028-01-16 | -153d | 0d | Pipe line O.D 50 mm PN 10, in depth 0 to 1.5 m [5.36]; Pipe line O.D 32 mm PN 10, in depth 0 to 1.5 m [3.22]; Excavator [40.55 h]; Water Tanker [48 h]; Truck [81.09 h]; Crane [48 h]; Labor [200 h]; Driver [150 h]; Eq. Operator [100 h] | 1,651.6 | 825.8 | A17910 | Landsca |
| CON-LEG101-RA-1170 |  | Sand bedding for Secondary Irrigation [Roundabout : 03 ] | 10d | 2026-10-26 A | 2028-01-23 | CON-LEG101-RA-1140 | 50% | 5d | 2028-01-17 | 2028-01-27 | -153d | 0d | Loader [48 h]; Truck [48 h]; Driver [50 h]; Eq. Operator [50 h] |  |  | A18010 | Landsca |
| CON-LEG101-RA-1200 |  | Installation of Pipe for Secondary Irrigation [Roundabout : 03 ] | 11d | 2026-10-27 A | 2028-01-29 | CON-LEG101-RA-1170, CON-LEG101-PR-3940 | 50% | 5.5d | 2028-01-29 | 2028-02-09 | -153d | 0d | Pipe line O.D 50 mm PN 10, in depth 0 to 1.5 m [16.08]; Pipe line O.D 32 mm PN 10, in depth 0 to 1.5 m [9.65]; Excavator [48 h]; Crane [48 h]; Labor [150 h]; Skilled Labor [100 h]; Eq. Operator [100 h]; Plumber [50 h]; Pipe Fitter [50 h] | 4,953 | 2,476.5 | A18110 | Landsca |
| CON-LEG101-RA-1230 |  | Sand Surround for Secondary Irrigation [Roundabout : 03 ] | 11d | 2026-10-28 A | 2028-02-05 | CON-LEG101-RA-1200 | 50% | 5.5d | 2028-02-10 | 2028-02-22 | -114d | 0d | Loader [48 h]; Truck [48 h]; Driver [50 h]; Eq. Operator [50 h] |  |  | A18210 | Landsca |
| CON-LEG101-RA-1260 |  | Installation of Micron Marker Magnetic Tape [Roundabout : 03 ] | 11d | 2026-10-29 A | 2028-02-10 | CON-LEG101-RA-1230 | 50% | 5.5d | 2028-02-23 | 2028-03-06 | -114d | 0d | Labor [100 h] |  |  | A18310 | Landsca |
| CON-LEG101-RA-1290 |  | Backfilling to Subgrade Elevation [Roundabout : 03 ] | 11d | 2026-10-31 A | 2028-02-17 | CON-LEG101-RA-1260, CON-LEG101-EN-3440 | 50% | 5.5d | 2028-03-07 | 2028-03-19 | -114d | 0d | Pipe line O.D 50 mm PN 10, in depth 0 to 1.5 m [5.36]; Pipe line O.D 32 mm PN 10, in depth 0 to 1.5 m [3.22]; Excavator [48 h]; Water Tanker [48 h]; Road Roller [48 h]; Bucket [48 h]; Compactor [48 h]; Labor [100 h]; Driver [50 h]; Eq. Operator [200 h] | 1,651.6 | 825.8 | A18410 | Landsca |
| CON-LEG101-RA-1410 |  | Installation of tubing for risers connections from laterals [Roundabout : 03 ] | 19d | 2026-11-01 A | 2028-02-28 | CON-LEG101-RA-1290, CON-LEG101-PR-2770 | 50% | 9.5d | 2028-03-20 | 2028-04-10 | -114d | 55d | Pipe line O.D 25 mm PN 10, in depth 0 to 1.5 m [138.02]; Supply and installation of 16 mm dia (O.D.) linear low density polyethylene tubing including in line P.C. emitters, accessories, stakes, takeoff /risers connections from laterals, and all requirements needed to finish work as per drawings (In line dripper [3664.23]; Excavator [96 h]; Labor [100 h]; Skilled Labor [200 h]; Eq. Operator [100 h]; Pipe Fitter [100 h] | 157,610.8 | 78,805.4 | A18890 | Landsca |
|  | 2 | **Valves and Controller** |  | 2028-01-30 | 2028-03-18 |  |  |  |  |  |  |  |  |  |  |  |  |
| CON-LEG101-RA-1320 |  | Installation of Electrical Solenoid Valve [Roundabout : 03 ] | 5d | 2028-01-30 | 2028-02-03 | CON-LEG101-RA-1200, CON-LEG101-PR-3020 |  |  |  |  | -153d | 0d | Supply and installation of Electrical Solenoid Valve ( 1") inside PVC box with all accessories( pressure regulator module, manual bleeding, expedient for TSE water, in line filter, manual valve, valve box with cover, and all other accessories necessary to [0.67]; Excavator [48 h]; Labor [100 h]; Skilled Labor [50 h]; Eq. Operator [50 h]; Pipe Fitter [50 h] | 4,355 |  | A18530 | Landsca |
| CON-LEG101-RA-1350 |  | Installation of quick coupler valve [Roundabout : 03 ] | 5d | 2028-02-05 | 2028-02-09 | CON-LEG101-RA-1320, CON-LEG101-PR-3030 |  |  |  |  | -153d | 0d | Supply and installation of 1" quick coupler valve inside PVC box [0.67]; Excavator [48 h]; Labor [100 h]; Skilled Labor [50 h]; Eq. Operator [50 h]; Pipe Fitter [50 h] | 3,015 |  | A18630 | Landsca |
| CON-LEG101-RA-1380 |  | Installation of a Flush valve [Roundabout : 03 ] | 11d | 2028-02-10 | 2028-02-22 | CON-LEG101-PR-2760, CON-LEG101-RA-1350, CON-LEG101-PR-3110 |  |  |  |  | -153d | 0d | "Supply and installation of a flush valve at the end of ½-inch drip irrigation lines, including all necessary accessories such as protective box and fittings, to complete the work as required and in accordance with the supervising engineer’s instructions. [3.35]; Excavator [48 h]; Labor [100 h]; Skilled Labor [50 h]; Eq. Operator [50 h]; Pipe Fitter [50 h] | 6,700 |  | A18770 | Landsca |
| CON-LEG101-RA-1440 |  | Install single station decoder for valve connection [Roundabout : 03 ] | 7d | 2028-02-23 | 2028-03-01 | CON-LEG101-PR-2830, CON-LEG101-RA-1380, CON-LEG101-PR-3150 |  |  |  |  | -153d | 0d | Supply and install single station decoder for valve connection to field controller including waterproof connectors and all other accessories necessary to complete the works in accordance with specifications and drawings (Decoder Single station ). [0.67]; Excavator [48 h]; Labor [100 h]; Skilled Labor [50 h]; Eq. Operator [50 h]; Pipe Fitter [50 h] | 3,350 |  | A19030 | Landsca |
| CON-LEG101-RA-1470 |  | Installation of Decoder cables 12 AWG between valves and controllers [Roundabout : 03 ] | 14d | 2028-03-02 | 2028-03-18 | CON-LEG101-PR-2790, CON-LEG101-RA-1440, CON-LEG101-PR-3050 |  |  |  |  | -153d | 0d | Supply and installation of Decoder cables 12 AWG between valves and controllers, The cables shall be pulled through 32? UPVC conduit and inspection 10" round valve box every 100 meters, as per standard specification and drawings [432.15]; Excavator [96 h]; Labor [200 h]; Skilled Labor [100 h]; Eq. Operator [100 h]; Pipe Fitter [100 h] | 25,929 |  | A19150 | Landsca |
|  | 3 | **Curbs and edging** |  | 2028-03-19 | 2028-03-21 |  |  |  |  |  |  |  |  |  |  |  |  |
| CON-LEG101-RA-1110 |  | Installation of Curbs and edging [Roundabout : 03 ] | 3d | 2028-03-19 | 2028-03-21 | CON-LEG101-RA-1470, CON-LEG101-PR-3070, CON-LEG101-EN-3400 |  |  |  |  | -153d | 0d | Planting curb edge, size 500 x 250 x 100 mm. [45.56]; Labor [100 h]; Skilled Labor [100 h] | 5,467.2 |  | A17750 | Landsca |
|  | 2 | **Landscape** |  | 2028-03-22 | 2028-04-13 |  |  |  |  |  |  |  |  |  |  |  |  |
| CON-LEG101-RA-1020 |  | Site preparation for Planting Area [Roundabout : 03 ] | 7d | 2028-03-22 | 2028-03-29 | CON-LEG101-RA-1110, CON-LEG101-EN-3370, CON-LEG101-EN-3440 |  |  |  |  | -153d | 0d | Ref. SH-01, Golden daisy bush euryops pectinatus [244.28]; Loader [48 h]; Water Tanker [48 h]; Compactor [48 h]; Labor [150 h]; Skilled Labor [50 h]; Driver [50 h]; Eq. Operator [100 h] | 26,870.8 |  | A17420 | Landsca |
| CON-LEG101-RA-1050 |  | Placing Agricutural Soil [Roundabout : 03 ] | 6d | 2028-03-30 | 2028-04-05 | CON-LEG101-RA-1020, CON-LEG101-EN-3380 |  |  |  |  | -153d | 0d | Ref. SH-01, Golden daisy bush euryops pectinatus [244.28]; Loader [48 h]; Water Tanker [48 h]; Labor [200 h]; Driver [50 h]; Eq. Operator [50 h] | 26,870.8 |  | A17520 | Landsca |
| CON-LEG101-RA-1080 |  | Planting Shrubs And Ground Cover [Roundabout : 03 ] | 7d | 2028-04-06 | 2028-04-13 | CON-LEG101-RA-1050, CON-LEG101-EN-3390, CON-LEG101-PR-3060 |  |  |  |  | -153d | 16d | Ref. SH-01, Golden daisy bush euryops pectinatus [732.85]; Labor [150 h] | 80,613.5 |  | A17620 | Landsca |

| ID | WBS | Activity | Duration | Start | Finish | Predecessors | Complete | Remaining | Planned start | Planned finish | Total float | Free float | Resources | Cost | Actual cost | USERTEXT | Weight 1 | Total Weight % | Mapping Sheet Activity ID | % A | JEDDAH 1 - Area Name |
| --- | --- | --- | --- | --- | --- | --- | --- | --- | --- | --- | --- | --- | --- | --- | --- | --- | --- | --- | --- | --- | --- |
|  | 6 | **Testing & Commissioning** |  | 2026-06-15 | 2028-05-10 |  |  |  |  |  |  |  |  |  |  |  |  |  |  |  |  |
| CON-LEG101-TC-1020 |  | Test for Public Water Utility Distribution | 8d | 2026-06-15 A | 2027-12-27 | CON-LEG101-OBA-1410, CON-LEG101-OBA-1450, CON-LEG101-OBA-1440, CON-LEG101-OBA-1340, CON-LEG101-OBA-1430, CON-LEG101-OBA-1420, CON-LEG101-LR-1240 SS, CON-LEG101-PR-1960, CON-LEG101-OBA-1510, CON-LEG101-TC-1110, CON-LEG101-LR-10740, CON-LEG101-LR-1250, CON-LEG101-LR-10750, CON-LEG101-LR-1260, CON-LEG101-LR-10760, CON-LEG101-LR-1270, CON-LEG101-LR-10770, CON-LEG101-LR-1030, CON-LEG101-LR-10780, CON-LEG101-LR-10790, CON-LEG101-LR-1280, CON-LEG101-LR-10800, CON-LEG101-LR-10810, CON-LEG101-LR-1070, CON-LEG101-LR-10820, CON-LEG101-LR-1080, CON-LEG101-LR-10830, CON-LEG101-LR-1090, CON-LEG101-OBA-1220 | 80% | 1.6d | 2027-10-14 | 2027-10-24 | -95d | 0d | Public Water - 110mm Diameter Depth: 0.00 m - 1.50 m. [215.3]; Public Water - 110mm Diameter Depth: 1.51 m - 2.50 m. [140.5]; Public Water - 110mm Diameter Depth exceeds 2.50m [2]; Public Water - 160mm Diameter Depth: 1.51m - 2.50m [79.3]; Public Water - 200mm Diameter Depth: 0.00m -1.50m [214.8]; Public Water - Concrete encasement, pipe dia 110 mm [19.2]; Public Water - Gate valves, on pipe with diameter 110 mm [7.5]; Public Water - Gate valves, on pipe with diameter 160 mm [1]; Public Water - Gate valves, on pipe with diameter 200 mm [0.7]; Public Water - Butterfly valves, on pipe with diameter 400 mm [0.1]; Public Water - Wash out valve, on pipes with diameter 110-400 mm [0.7]; Public Water - Air valve complete with gate valves, on pipes with diameter less than 315 mm. [0.6]; Public Water - Air valve complete with gate valves, on pipes with diameter from 355 to 630 mm [0.2]; Public Water - On 315-400 mm diameter pipeline [0.1]; Public Water - Wash out valve chamber; on 110-400 mm diameter pipeline [0.7]; Public Water - Air valve chamber; on less than 315 mm diameter pipeline [0.6]; Public Water - Air valve chamber; on pipe from 355 to 630 mm [0.2]; Public Water - 160mm Diameter Depth: 0.00 m - 1.50 m. [64]; Public Water - 160mm Diameter Depth exceeds 2.50m [2]; Public Water - 200mm Diameter Depth: 1.51m - 2.50m [96.1]; Public Water - 200mm Diameter Depth exceeds 2.50m [2]; Public Water - 400mm Diameter Depth: 0.00m -1.50m [258.1]; Public Water - 400mm Diameter Depth: 1.51m - 2.50m [9.1]; Public Water - 400mm Diameter Depth exceeds 2.50m [2]; Engineer & Technician [1570 h] | 494,212 | 395,369.6 | MKH2-02-002-TC-1020 | 0.00427601156373912 | 0.427601156373912 | F1020 | 0.6 | Test |
| CON-LEG101-TC-1030 |  | Test for TSE Network | 7d | 2026-06-15 A | 2028-01-10 | CON-LEG101-LR-2470, CON-LEG101-TC-1010, CON-LEG101-LR-2630, CON-LEG101-PR-1970, CON-LEG101-LR-2070, CON-LEG101-LR-2680, CON-LEG101-LR-2090, CON-LEG101-LR-2690, CON-LEG101-LR-2100, CON-LEG101-LR-2110, CON-LEG101-LR-2710, CON-LEG101-LR-2110 FF, CON-LEG101-LR-2710 FF, CON-LEG101-LR-2120, CON-LEG101-LR-2720, CON-LEG101-LR-2130, CON-LEG101-LR-2730, CON-LEG101-LR-2140, CON-LEG101-LR-2740, CON-LEG101-LR-2150, CON-LEG101-LR-2530, CON-LEG101-LR-2160, CON-LEG101-LR-2540, CON-LEG101-LR-2170, CON-LEG101-LR-2750, CON-LEG101-OBA-1060, CON-LEG101-OBA-1070 | 80% | 1.4d | 2027-11-21 | 2027-11-29 | -86.4d | 0d | Piping TSE Network - 200mm Diameter Depth: 2.51m - 3.50m [5.9]; Piping TSE Network - 200mm Diameter Depth exceeds 3.50m [2]; Piping TSE Network - Gate valves, on pipe with diameter 250 mm [0.1]; Piping TSE Network - Butterfly valves, on pipe with diameter 315 mm [0.4]; Piping TSE Network - 3-outlet fire hydrant (2 x 2.5 inch and 1 x 4.5 inch) in the form of a separate dry vacuum cylinder [8.9]; Piping TSE Network - 110mm Diameter Depth: 0.00 m - 1.50 m. [51.5]; Piping TSE Network - 110mm Diameter Depth: 1.51m - 2.50m [75.7]; Piping TSE Network - 110mm Diameter Depth exceeds 2.50m [2]; Piping TSE Network - 160mm Diameter Depth: 0.00 m - 1.50 m. [54.5]; Piping TSE Network - 160mm Diameter Depth: 1.51m - 2.50m [161.6]; Piping TSE Network - 160mm Diameter Depth exceeds 2.50m [2]; Piping TSE Network - 200mm Diameter Depth: 0.00 m - 1.50 m. [154.5]; Piping TSE Network - 200mm Diameter Depth: 1.51m - 2.50m [297.8]; Piping TSE Network - 250mm Diameter Depth: 0.00 m - 1.50 m. [2]; Piping TSE Network - 250mm Diameter Depth: 1.51m - 2.50m [20.7]; Piping TSE Network - 250mm Diameter Depth exceeds 2.50m [2]; Piping TSE Network - 315mm Diameter Depth: 0.00 m - 1.50 m. [66.1]; Piping TSE Network - 315mm Diameter Depth: 1.51m - 2.50m [40.6]; Piping TSE Network - 315mm Diameter Depth: 2.51m - 3.50m [1.5]; Piping TSE Network - Concrete encasement, pipe dia 110 mm [6.8]; Piping TSE Network - 315mm Diameter Depth exceeds 3.50m [2]; Piping TSE Network - Gate valves, on pipe with diameter 110 mm [8.8]; Piping TSE Network - Gate valves, on pipe with diameter 160 mm [0.9]; Piping TSE Network - Gate valves, on pipe with diameter 200 mm [1.9]; Piping TSE Network - Wash out valve, on pipes with diameter 110-400 mm [1.1]; Piping TSE Network - Air valve complete with gate valves, on pipes with diameter less than 315 mm. [1]; Piping TSE Network - On 315-400 mm diameter pipeline [0.4]; Piping TSE Network - Wash out valve chamber; on 110-400 mm diameter pipeline [1.1]; Piping TSE Network - Air valve chamber; on less than 315 mm diameter pipeline [1]; Engineer & Technician [1570 h] | 581,275 | 465,020 | MKH2-02-002-TC-1030 | 0.00294807942651783 | 0.294807942651783 | F1030 | 0.6 | Test |
| CON-LEG101-TC-1040 |  | Test for Sanitary Sewerage | 8d | 2026-06-15 A | 2027-12-28 | CON-LEG101-TC-1110, CON-LEG101-LR-3410, CON-LEG101-LR-3500, CON-LEG101-LR-3420, CON-LEG101-LR-3510, CON-LEG101-LR-3430, CON-LEG101-LR-3520, CON-LEG101-LR-3440, CON-LEG101-LR-3530, CON-LEG101-LR-3440 FF, CON-LEG101-LR-3530 FF, CON-LEG101-LR-3450, CON-LEG101-LR-3540, CON-LEG101-LR-3460, CON-LEG101-LR-3550, CON-LEG101-LR-3480, CON-LEG101-LR-3560, CON-LEG101-LR-3490, CON-LEG101-LR-3570, CON-LEG101-OBA-1140, CON-LEG101-OBA-1150, CON-LEG101-TC-1020 SS | 75% | 2d | 2027-10-14 | 2027-10-24 | -91.4d | 0d | Sanitary Sewerage 450mm Depth: 3.51m - 4.50m [8]; Sanitary Sewerage 450mm Depth exceeds 4.50m [2]; Sanitary Sewerage - Concrete encasement pipe dia 200 mm [100.4]; Sanitary Sewerage Concrete encasement pipe dia 350 mm [2.5]; Sanitary Sewerage MH depth 0.00 m - 1.50 m. [3]; Sanitary Sewerage MH depth 1.51 - 2.50 m [4.5]; Sanitary Sewerage MH depth 1.51 - 2.50 m with back drop [0.4]; Sanitary Sewerage MH depth 2.51 - 3.50 m [3.7]; Sanitary Sewerage MH depth 2.51 - 3.50 m with back drop [0.1]; Sanitary Sewerage MH depth 3.51 - 4.50 m [0.3]; Sanitary Sewerage MH depth exceeds 3.50 m with back drop [0.1]; Sanitary Sewerage MH depth exceeds 4.50 m [0.1]; Sanitary Sewerage 150mm Diameter Depth: 0.00 m - 1.50 m. [2]; Sanitary Sewerage 150mm Diameter Depth: 1.51m - 2.50m [20]; Sanitary Sewerage 150mm Diameter Depth exceeds 2.50m [2]; Sanitary Sewerage 200mm Depth: 0.00 m - 1.50 m. [129.1]; Sanitary Sewerage 200mm Depth: 1.51m - 2.50m [218.6]; Sanitary Sewerage 200mm Depth: 2.51m - 3.50m [108.8]; Sanitary Sewerage 200mm Depth exceeds 3.50m [2]; Sanitary Sewerage 300mm Depth: 0.00 m - 1.50 m. [2]; Sanitary Sewerage 300mm Depth: 1.51m - 2.50m [23.4]; Sanitary Sewerage 300mm Depth: 2.51m - 3.50m [24.4]; Sanitary Sewerage 300mm Depth exceeds 3.50m [2]; Sanitary Sewerage 350mm Depth: 0.00 m - 1.50 m. [2]; Sanitary Sewerage 350mm Depth: 1.51m - 2.50m [22.7]; Sanitary Sewerage 350mm Depth: 2.51m - 3.50m [8.9]; Sanitary Sewerage 350mm Depth exceeds 3.50m [2]; Sanitary Sewerage 450mm Depth: 0.00 m - 1.50 m. [2]; Sanitary Sewerage 450mm Depth: 1.51m - 2.50m [48]; Sanitary Sewerage 450mm Depth: 2.51m - 3.50m [43.8]; Engineer & Technician [1570 h] | 568,550 | 426,412.5 | MKH2-02-002-TC-1040 | 0.00628705390364481 | 0.628705390364481 | F1040 | 0.6 | Test |
| CON-LEG101-TC-1050 |  | Test for Stormwater Utilities | 8d | 2026-06-15 A | 2027-12-30 | CON-LEG101-TC-1040, CON-LEG101-LR-4200, CON-LEG101-LR-4320, CON-LEG101-LR-4210, CON-LEG101-LR-4330, CON-LEG101-LR-4440, CON-LEG101-LR-4220, CON-LEG101-LR-4340, CON-LEG101-LR-4450, CON-LEG101-LR-4230, CON-LEG101-LR-4350, CON-LEG101-LR-4460, CON-LEG101-LR-4230 FF, CON-LEG101-LR-4350 FF, CON-LEG101-LR-4460 FF, CON-LEG101-LR-4240, CON-LEG101-LR-4250, CON-LEG101-LR-4370, CON-LEG101-LR-4470, CON-LEG101-LR-4260, CON-LEG101-LR-4380, CON-LEG101-LR-4480, CON-LEG101-LR-4280, CON-LEG101-LR-4390, CON-LEG101-LR-4490, CON-LEG101-LR-4290, CON-LEG101-LR-4400, CON-LEG101-LR-4500, CON-LEG101-LR-4300, CON-LEG101-LR-4410, CON-LEG101-LR-4510 | 75% | 2d | 2027-10-24 | 2027-11-02 | -91.4d | 0d | Stormwater Utilities - (ring 1200 mm internal dia.) MH depth 1.51 - 2.50m [6.7]; Stormwater Utilities - (ring 1200 mm internal dia.) MH depth 2.51 - 3.50m [3.4]; Stormwater Utilities - (ring 1200 mm internal dia.) MH depth 3.51 - 4.50m [1.9]; Stormwater Utilities - (ring 1200 mm internal dia.) MH depth exceeds 4.50m [0.1]; Stormwater Utilities - (ring 1500 mm internal dia.) MH depth exceeds 3.50m [0.1]; Single Catch basin as per drawings [9.9]; Double Catch basin as per drawings [2]; Curb inlet catch basin [6.1]; Outfall structure as per drawings [0.1]; Stormwater Utilities - PVC Pipes - 300 mm Diameter Depth: 0.00 m - 1.50 m. [104.5]; Stormwater Utilities - PVC Pipes - 300 mm Diameter Depth: 1.51m - 2.50m [153.1]; Stormwater Utilities - PVC Pipes - 300 mm Diameter Depth exceeds 2.50m [2]; Stormwater Utilities - PVC Pipes - 400 mm Diameter Depth: 0.00 m - 1.50 m. [0.5]; Stormwater Utilities - PVC Pipes - 500 mm Depth: 0.00 m - 1.50 m. [2]; Stormwater Utilities - PVC Pipes - 400 mm Diameter Depth: 1.51m - 2.50m [0.8]; Stormwater Utilities - PVC Pipes - 400 mm Diameter Depth exceeds 2.50m [0.5]; Stormwater Utilities - PVC Pipes - 500 mm Depth: 1.51m - 2.50m [47.3]; Stormwater Utilities - PVC Pipes - 500 mm Depth exceeds 2.50m [2]; Stormwater Utilities - GRP Pipes - 400 mm Diameter Depth: 0.00 m - 1.50 m. [2]; Stormwater Utilities - GRP Pipes - 400 mm Depth: 1.51m - 2.50m [42]; Stormwater Utilities - GRP Pipes - 400 mm Depth exceeds 2.50m [2]; Stormwater Utilities - GRP Pipes - 500 mm Depth: 0.00 m - 1.50 m. [2]; Stormwater Utilities - GRP Pipes - 500 mm Depth: 1.51m - 2.50m [275.5]; Stormwater Utilities - GRP Pipes - 500 mm Depth: 2.51m - 3.50m [115]; Stormwater Utilities - GRP Pipes - 500 mm Depth: 3.51m - 4.50m [18.3]; Stormwater Utilities - GRP Pipes - 500 mm Depth exceeds 4.50m [2]; Stormwater Utilities - GRP Pipes - 600 mm Depth: 1.51m - 2.50m [6.3]; Stormwater Utilities - GRP Pipes - 600 mm Depth: 2.51m - 3.50m [58.4]; Stormwater Utilities - GRP Pipes - 600 mm Depth: 3.51m - 4.50m [31.1]; Stormwater Utilities - GRP Pipes - 600 mm Depth exceeds 4.50m [2]; Stormwater Utilities - GRP Pipes - 700 mm Depth: 1.51m - 2.50m [2]; Stormwater Utilities - GRP Pipes - 700 mm Depth: 2.51m - 3.50m [7.2]; Stormwater Utilities - GRP Pipes - 700 mm Depth exceeds 3.50m [2]; Stormwater Utilities - GRP Pipes - 800 mm Depth: 1.51m - 2.50m [4.3]; Stormwater Utilities - GRP Pipes - 800 mm Depth: 2.51m - 3.50m [19.8]; Stormwater Utilities - GRP Pipes - 800 mm Depth exceeds 3.50m [2]; Stormwater Utilities - (ring 1500 mm internal dia.) MH depth 1.51 - 2.50m [0.2]; Stormwater Utilities - (ring 1500 mm internal dia.) MH depth 2.51 - 3.50m [0.6]; Engineer & Technician [1570 h] | 1,041,566 | 781,174.5 | MKH2-02-002-TC-1050 | 0.0182365029001906 | 1.82365029001906 | F1050 | 0.6 | Test |
| CON-LEG101-TC-1060 |  | Test for Bridge Work | 8d | 2026-06-15 A | 2028-01-03 | CON-LEG101-TC-1050, CON-LEG101-BR-1250, CON-LEG101-BR-1020, CON-LEG101-BR-1030, CON-LEG101-BR-1130, CON-LEG101-BR-1060, CON-LEG101-BR-1090, CON-LEG101-BR-1220, CON-LEG101-BR-1230, CON-LEG101-MS-1020 | 65% | 2.8d | 2027-11-02 | 2027-11-11 | -86.4d | 0d | "Lean concrete [0.8]; "Reinforced concrete Piles [14.4]; "Reinforced concrete of Bridge Sub-structure [13.5]; "Reinforced concrete Bridge Superstructure [21.3]; "Reinforced precast prestressed concrete [24.8]; "PRESTRESSING STRANDS [2]; "Reinforced Steel Grade 60 [10]; "New Jersey [9.6]; Membrane waterproofing for concert in touch with soil and membrane waterproofing for bridge slab (under asphalt ) as per details drawing ST-DWG-6103, including protection board around foundation sides. The cost includes preparation work and cleaning the s [50]; "Protective Coating for Concrete Surfaces [130.21]; "BRIDGE BEARINGS [1.2]; "EXPANSION JOINTS [2.06]; "GUARD RAIL [8]; "GRP PANEL [23.5]; "LOGO MODON [0.2]; "Bridge Gully (Scupper) drainage [0.3]; Engineer & Technician [1570 h] | 345,044.7 | 224,279.05 |  | 0.00052973795332298 | 0.052973795332298 | F1060 | 0.6 | Test |
| CON-LEG101-TC-1080 |  | Test for Fence & Gate | 6d | 2026-06-15 A | 2027-12-13 | CON-LEG101-FG-1340, CON-LEG101-FG-1350, CON-LEG101-FG-1360, CON-LEG101-FG-1270, CON-LEG101-FG-1370, CON-LEG101-FG-1380, CON-LEG101-MS-1040 | 60% | 2.4d | 2027-11-02 | 2027-11-09 | -41.5d | 0d | "Lean concrete [31.2]; Isolated footings [64.4]; Strip footings [106.9]; Grade beams [93.3]; Columns [22.5]; Retaining Walls [116.6]; "Supply and install cold applied bituminous paint waterproofing for R.C foundation and, as per drawings and specs section: [1953]; Gate, to fit 15000mm opening x 2500mm high [0.3]; Gate, to fit 3600 mm opening x 2500mm high [0.3]; "METAL FENCE [335.6]; "PAINT ON CEMENT PLASTER [406.2]; Engineer & Technician [1570 h] | 1,179,417 | 707,650.2 |  | 9.39817236874669E-005 | 0.00939817236874669 | F1080 | 0.6 | Test |
| CON-LEG101-TC-1000 |  | Test for Telecommunications Work | 6d | 2026-08-01 A | 2028-01-19 | CON-LEG101-TC-1100, CON-LEG101-LR-9330, CON-LEG101-LR-9340, CON-LEG101-LR-9350, CON-LEG101-LR-9360, CON-LEG101-LR-9360 FF, CON-LEG101-LR-9370, CON-LEG101-LR-9380, CON-LEG101-LR-9390, CON-LEG101-LR-9400, CON-LEG101-LR-9410, CON-LEG101-LR-9420 | 30% | 4.2d | 2027-12-05 | 2027-12-12 | -82.2d | 0d | Engineer & Technician [1210 h]; 6-ways ducts, 50mm diameter, (HDPE TYPE) . [552.6]; 2 x 32 mm HDPE sub-ducts [86.8]; 4 x 32 mm HDPE sub-ducts [17.2]; 6 x 32 mm HDPE sub-ducts [4.7]; 6-ways ducts, 50mm diameter, (HDPE TYPE) + 2 x 32 mm HDPE sub-ducts [258.1]; 6-ways ducts, 50mm diameter, (HDPE TYPE) + 4 x 32 mm HDPE sub-ducts [217.8]; 6-ways ducts, 50mm diameter, (HDPE TYPE) + 6 x 32 mm HDPE sub-ducts [85.8]; Reinforced concrete manhole Type 1- 1200x1500x1200mm [1.8]; Reinforced concrete manhole Type 2- 1200x1500x1200mm [5.9]; 6-ways ducts, 50mm diameter, (HDPE TYPE) . [85.1]; 6-ways ducts, 50mm diameter, (HDPE TYPE) + 2 x 32 mm HDPE sub-ducts [6.1] | 341,181 | 102,354.3 | MKH2-02-002-TC-1000 | 0 | 0 | F1000 | 0.3 | Test |
| CON-LEG101-TC-1010 |  | Test for Electrical Network | 8d | 2026-08-01 A | 2028-01-08 | CON-LEG101-TC-1060, CON-LEG101-LR-7680, CON-LEG101-LR-8760, CON-LEG101-LR-7690, CON-LEG101-LR-8770, CON-LEG101-LR-7700, CON-LEG101-LR-8780, CON-LEG101-LR-7710, CON-LEG101-LR-8790, CON-LEG101-LR-7710 FF, CON-LEG101-LR-8790 FF, CON-LEG101-LR-7720, CON-LEG101-LR-8800, CON-LEG101-LR-7730, CON-LEG101-LR-8810, CON-LEG101-LR-7740, CON-LEG101-LR-8820, CON-LEG101-LR-7750, CON-LEG101-LR-8050, CON-LEG101-LR-7760, CON-LEG101-LR-8060, CON-LEG101-LR-8500 | 40% | 4.8d | 2027-11-14 | 2027-11-23 | -86.4d | 0d | "Excavation for Trench size 90cm wide and 80cm deep [405.4]; Normally Open Point (R M U) 13.8 kv for Outdoor type according to the Saudi Electric Company specifications and requirements. [0.7]; Cable 13.8 kV (3-C)x 50 mm² CU /XLPE/PVC, Unarmored [2]; Cable Termination for 13.8 kv (3-C)x 50 mm² CU /XLPE/PVC, Unarmored. [0.8]; Engineer & Technician [1570 h]; Duct bank for (1) cables [52.5]; Duct bank for (2) cables [10]; Duct bank for (4) cables [7.5]; Cable 13.8 kV 3Cx 500 mm² Al XLPE,/LLDPE / Unarmored [1450]; Straight joints cables for 13.8 kv 3Cx 500 mm², Al /XLPE/LLDPE [3.61]; Cable Termination for 13.8 kv 3Cx 500 mm², Al /XLPE/LLDPE [2.8] | 418,189 | 167,275.6 | MKH2-02-002-TC-1010 | 0.0147449549613949 | 1.47449549613949 | F1010 | 0.3 | Test |
| CON-LEG101-TC-1070 |  | Test for CCTV feeding system and GSM | 6d | 2026-08-01 A | 2028-01-23 | CON-LEG101-TC-1000, CON-LEG101-LR-9940, CON-LEG101-LR-9950, CON-LEG101-LR-9960, CON-LEG101-LR-9970, CON-LEG101-LR-9980, CON-LEG101-LR-9990, CON-LEG101-LR-10000, CON-LEG101-LR-10010, CON-LEG101-LR-10020, CON-LEG101-LR-10030 | 40% | 3.6d | 2027-12-12 | 2027-12-19 | -80d | 0d | Earthing for Industrial switch poles and GSM towers [0.9]; Engineer & Technician [1570 h]; Stranded Copper wire, , 3xC,2 mm² XLPE/PVC [17.5]; Fiber Optic Patch Panel 12 port [0.2]; Modular Industrial Switches for main pole [0.1]; 8POE ports Industrial Switches for remote poles [0.6]; CORE SWITCH [0.2]; Access Switch 48 port [0.2]; SERVER [0.3]; Stand rack 42U- 19" completed with ,ventilation fans, earthling connections, labeling and should be equipped with an extra capacity of 20% for future increase. [0.2]; IP Outdoor CCTV POE Camera,5 MP, Metal Housing [2.8]; "Outdoor PTZ with IR, HDTV 1080 and 31x optical, 12x digital, total 372x zoom, H264/265 with Motion JPEG. [0.7]; Security workstation with 1 x 19" LED screen including graphic video cards, software, license and interfaces required for the system [0.1]; LED Screen 43" (24/7 operation) with Ethernet decoders [0.4]; Network Video Recorder 4k 64 Channel, Up to 12 MP high-definition live view, storage and playback, 2 HDMI (different source) and 2 VGA (different source) interfaces (Min). [0.1]; Keypad [0.1]; Horizontal Power Distribution Unit (min 8 outlets) [0.2]; "35 Meters mono pole with Double Platform for Access Points including : [0.1]; "25 Meters pole for CCTV Cameras including : [0.6]; Short Range wireless point to point wireless bridge [1.2]; Stranded armored Cables, Copper, 4C,35mm² XLPE/SWA /PVC [62]; Stranded armored Cables, Copper, 4xC16mm² XLPE /SWA/PVC [235]; Single Core Cable, Copper 1C,16mm² CU/PVC For Earth [62]; Single Core Cable, Copper 1C,10mm² CU/PVC For Earth [235]; Duct bank for (1) cables [25] | 249,750 | 99,900 |  | 0 | 0 | F1070 | 0.3 | Test |
| CON-LEG101-TC-1100 |  | Test for Road Lighting | 6d | 2026-08-01 A | 2028-01-13 | CON-LEG101-LR-8330, CON-LEG101-TC-1030, CON-LEG101-LR-8430, CON-LEG101-LR-8440, CON-LEG101-LR-8450, CON-LEG101-LR-8460, CON-LEG101-LR-8370, CON-LEG101-LR-8380, CON-LEG101-LR-8390, CON-LEG101-LR-8400, CON-LEG101-LR-8410, CON-LEG101-LR-8470 | 40% | 3.6d | 2027-11-28 | 2027-12-05 | -82.2d | 0d | Unit Substation 13.8/0.4 K V, 500kVA ,Including concrete foundations and fencing, According to the specifications and standards of SEC [0.4]; Ring Main Unit RMU, 13.8KV, According to the specifications and standards of SEC [0.4]; Lighting poles with 1 arm, height of (8 ) meters, including the power distribution box, cables, and RCC foundation. [44.3]; Street Lighting( LED) Luminous efficacy ? 120Lum/w complete with control gear and lamp, (100) WATT. Max. [44.3]; Street Lighting feeder pillars [1]; Main 100A MCCB with outgoing [0.4]; Supply and installation of KWH meter mounting frame including concrete block wall for KWH meter inculding foundations and finishings according to the standareds and specification of SEC [0.4]; Engineer & Technician [1570 h]; Stranded armored Cables, Copper, 4C,50mm² XLPE /SWA/PVC [2]; Stranded armored Cables, Copper, 4C,35mm² XLPE/SWA /PVC [260]; Stranded armored Cables, Copper, 4xC16mm² XLPE /SWA/PVC [1700]; Single Core Cable, Copper 1C,16mm² CU/PVC For Earth [260]; Single Core Cable, Copper 1C,10mm² CU/PVC For Earth [1700]; Single Core Cable, Copper 1C,25mm² CU/PVC For Earth [2]; Duct bank for (3) cables [5]; Duct bank for (1) cables [32.5]; Duct bank for (2) cables [12.5] | 477,615 | 191,046 |  | 0 | 0 | F1100 | 0.3 | Test |
| CON-LEG101-TC-1110 |  | Test for Road Works | 8d | 2026-08-01 A | 2027-12-26 | CON-LEG101-LR-6780, CON-LEG101-LR-6680, CON-LEG101-LR-6180, CON-LEG101-LR-6280, CON-LEG101-LR-6380, CON-LEG101-LR-6080, CON-LEG101-LR-6800, CON-LEG101-LR-6700, CON-LEG101-LR-6200, CON-LEG101-LR-6300, CON-LEG101-LR-6400, CON-LEG101-LR-6100, CON-LEG101-LR-6110, CON-LEG101-LR-6410, CON-LEG101-LR-6310, CON-LEG101-LR-6210, CON-LEG101-LR-6710, CON-LEG101-LR-6810, CON-LEG101-LR-6120, CON-LEG101-LR-6420, CON-LEG101-LR-6320, CON-LEG101-LR-6220, CON-LEG101-LR-6720, CON-LEG101-LR-6820, CON-LEG101-LR-6130, CON-LEG101-LR-6430, CON-LEG101-LR-6330, CON-LEG101-LR-6230, CON-LEG101-LR-6730, CON-LEG101-LR-6830, CON-LEG101-LR-6140, CON-LEG101-LR-6440, CON-LEG101-LR-6340, CON-LEG101-LR-6240, CON-LEG101-LR-6740, CON-LEG101-LR-6840, CON-LEG101-LR-6150, CON-LEG101-LR-6450, CON-LEG101-LR-6350, CON-LEG101-LR-6250, CON-LEG101-LR-6750, CON-LEG101-LR-6850, CON-LEG101-LR-6160, CON-LEG101-LR-6460, CON-LEG101-LR-6360, CON-LEG101-LR-6260, CON-LEG101-LR-6760, CON-LEG101-LR-6860, CON-LEG101-LR-6170, CON-LEG101-LR-6470, CON-LEG101-LR-6370, CON-LEG101-LR-6270, CON-LEG101-LR-6770, CON-LEG101-LR-6870, CON-LEG101-MS-1010 | 70% | 2.4d | 2027-10-18 | 2027-10-27 | -103.4d | 0d | Removal of chain link fence [215.5]; Removal of concrete fence [203]; Removal of Electricity distribution panel [0.1]; Demolition of existing structures [250]; Excavation for Roadway, fences and bridge, cuttings including dump locations (all types of soil) [14706]; Parcrels Excavation for cuttings (all types of soil) [12355.5]; Embankments to the roads , fences and bridge. [10243]; Embankments to the parcels [9464.5]; Subgrade [3730.5]; Bituminous base course (Grading I - Class A), including Prime Coat (MC1) according to drawings [829]; Bituminous concrete wearing course, (Grading I - Class A), including tack coat (RC2) according to drawings. [592]; Precast Concrete Kerb, Type K1-A [2012]; Precast Concrete Kerb, Type K4 [1579.5]; Precast Concrete Kerb, Type K1-B [828]; Precast Concrete Kerb, Type K NEW (Flushed Kerb) [1579.5]; Interlocking block pavers for sidewalk/footpath [3862]; Interlocking block pavers for roads/on-street parking [1928.5]; Retroreflective Plastic Cones [1.8]; Retroreflective Thermoplastic white paint [290]; Retroreflective Thermoplastic yellow paint including Rumble strips [88]; Handicap ramp [11.6]; Traffic signs, ground mounted, Sheet Aluminum, (breakaway)Single post, with all accessories [16.6]; Traffic signs, ground mounted, Sheet Aluminum, (breakaway) Double post with all accessories [9.1]; Traffic signs, ground mounted, Sheet Alumenium, (breakaway) One road sign assembly mounted on two tubular post with all accessories [0.4]; Aggregate base course [2487 M3]; Engineer & Technician [1570 h] | 2,658,716.5 | 1,861,101.55 |  | 0 | 0 | F1110 | 0.4 | Test |
| CON-LEG101-TC-1120 |  | Test for Earthing System | 6d | 2026-08-01 A | 2028-01-27 | CON-LEG101-LR-8330, CON-LEG101-TC-1070, CON-LEG101-LR-15130, CON-LEG101-LR-15140, CON-LEG101-LR-15150, CON-LEG101-LR-15160, CON-LEG101-LR-15170, CON-LEG101-LR-8280, CON-LEG101-LR-8290, CON-LEG101-LR-8300, CON-LEG101-LR-8310, CON-LEG101-LR-8320 | 30% | 4.2d | 2027-12-19 | 2027-12-26 | -80d | 0d | Earthing for Distribution panels,SL feeder pillars, KWH, Unit substations and RMU [2.2]; Earthing for Streetlighting feeders for every end pole circuits. [3.9]; Engineer & Technician [1570 h] | 16,600 | 4,980 |  | 0 | 0 | F1120 | 0.3 | Test |
| CON-LEG101-TC-1090 |  | Test for Irrigation and Landscape | 7d | 2028-05-03 | 2028-05-10 | CON-LEG101-TC-1000 SS, CON-LEG101-LR-5410, CON-LEG101-LR-5520, CON-LEG101-LR-4790, CON-LEG101-LR-4720, CON-LEG101-LR-5420, CON-LEG101-LR-5530, CON-LEG101-LR-4800, CON-LEG101-LR-4730, CON-LEG101-LR-5430, CON-LEG101-LR-5540, CON-LEG101-LR-4810, CON-LEG101-LR-4740, CON-LEG101-LR-5440, CON-LEG101-LR-5550, CON-LEG101-LR-4830, CON-LEG101-LR-4750, CON-LEG101-LR-5450, CON-LEG101-LR-5560, CON-LEG101-LR-4840, CON-LEG101-LR-4760, CON-LEG101-LR-5460, CON-LEG101-LR-5570, CON-LEG101-LR-4850, CON-LEG101-LR-4770, CON-LEG101-RA-1390, A, CON-LEG101-RA-1090, CON-LEG101-RA-1060, CON-LEG101-RA-1400, CON-LEG101-RA-1460, CON-LEG101-RA-1100, CON-LEG101-RA-1070, CON-LEG101-RA-1410, CON-LEG101-RA-1470, CON-LEG101-RA-1110, CON-LEG101-RA-1080, CON-LEG101-MS-1030 |  |  |  |  | -169d | 0d | Ref. SH-01, Golden daisy bush euryops pectinatus [911.5]; Planting curb edge, size 500 x 250 x 100 mm. [34]; Pipe line O.D 50 mm PN 10, in depth 0 to 1.5 m [20]; Pipe line O.D 32 mm PN 10, in depth 0 to 1.5 m [12]; Pipe line O.D 25 mm PN 10, in depth 0 to 1.5 m [103]; Supply and installation of Electrical Solenoid Valve ( 1") inside PVC box with all accessories( pressure regulator module, manual bleeding, expedient for TSE water, in line filter, manual valve, valve box with cover, and all other accessories necessary to [0.5]; Supply and installation of Electrical Solenoid Valve ( 1.5") inside PVC box with all accessories( pressure regulator module, manual bleeding, expedient for TSE water, in line filter, manual valve, valve box with cover, and all other accessories necessary [0.3]; Supply and installation of 1" quick coupler valve inside PVC box [0.8]; "Supply and installation of a flush valve at the end of ½-inch drip irrigation lines, including all necessary accessories such as protective box and fittings, to complete the work as required and in accordance with the supervising engineer’s instructions. [5]; Supply and installation of 16 mm dia (O.D.) linear low density polyethylene tubing including in line P.C. emitters, accessories, stakes, takeoff /risers connections from laterals, and all requirements needed to finish work as per drawings (In line dripper [2734.5]; Supply and installation of Advanced Irrigation controller subject to client approval, can connect with Centarl Control system and cabable to integrate with Smart City systems,BMS or Scada system ,Can record the real flow rate per stations, [0.1]; Supply and install single station decoder for valve connection to field controller including waterproof connectors and all other accessories necessary to complete the works in accordance with specifications and drawings (Decoder Single station ). [0.8]; Supply and installation of Decoder cables 12 AWG between valves and controllers, The cables shall be pulled through 32? UPVC conduit and inspection 10" round valve box every 100 meters, as per standard specification and drawings [322.5]; Engineer & Technician [1570 h] | 305,575 |  |  | 0 | 0 | F1090 |  | Test |
|  | 7 | **Project Close-out** |  | 2027-12-13 | 2028-06-03 |  |  |  |  |  |  |  |  |  |  |  |  |  |  |  |  |
|  | 1 | **As-Built DWGs** |  | 2027-12-13 | 2028-05-22 |  |  |  |  |  |  |  |  |  |  |  |  |  |  |  |  |
|  | 1 | **As-Built DWGs Submittal** |  | 2027-12-13 | 2028-05-16 |  |  |  |  |  |  |  |  |  |  |  |  |  |  |  |  |
| CON-LEG101-ABS-1080 |  | As-Built DWGs Submittal for Fence & Gate | 6d | 2027-12-13 | 2027-12-20 | CON-LEG101-TC-1080, CON-LEG101-FG-1380 |  |  |  |  | -41.5d | 0d | Engineer & Technician [370 h] |  |  | MKH2-02-002-ABS-1060 | 0 | 0 | G1200 |  | As Buil |
| CON-LEG101-ABS-1110 |  | As-Built DWGs Submittal for Road Works | 12d | 2027-12-26 | 2028-01-09 | CON-LEG101-TC-1110 |  |  |  |  | -103.4d | 0d | Engineer & Technician [370 h] |  |  | MKH2-02-002-ABS-1060 | 0 | 0 | G1230 |  | As Buil |
| CON-LEG101-ABS-1020 |  | As-Built DWGs Submittal for Public Water Utility Distribution | 12d | 2027-12-28 | 2028-01-10 | CON-LEG101-TC-1020 |  |  |  |  | -95d | 2.4d | Engineer & Technician [365 h] |  |  | MKH2-02-002-ABS-1020 | 0 | 0 | G1090 |  | As Buil |
| CON-LEG101-ABS-1050 |  | As-Built DWGs Submittal for Stormwater Utilities | 12d | 2027-12-30 | 2028-01-13 | CON-LEG101-TC-1050 |  |  |  |  | -91.4d | 0d | Engineer & Technician [370 h] |  |  | MKH2-02-002-ABS-1050 | 0 | 0 | G1120 |  | As Buil |
| CON-LEG101-ABS-1060 |  | As-Built DWGs Submittal for Bridge Work | 12d | 2028-01-03 | 2028-01-17 | CON-LEG101-TC-1060 |  |  |  |  | -80.2d | 23.2d | Engineer & Technician [370 h] |  |  | MKH2-02-002-ABS-1060 | 0 | 0 | G1130 |  | As Buil |
| CON-LEG101-ABS-1030 |  | As-Built DWGs Submittal for TSE Network | 12d | 2028-01-10 | 2028-01-24 | CON-LEG101-TC-1030 |  |  |  |  | -86.4d | 0d | Engineer & Technician [370 h] |  |  | MKH2-02-002-ABS-1030 | 0 | 0 | G1100 |  | As Buil |
| CON-LEG101-ABS-1040 |  | As-Built DWGs Submittal for Sanitary Sewerage | 12d | 2028-01-13 | 2028-01-27 | CON-LEG101-TC-1040, CON-LEG101-ABS-1020, CON-LEG101-ABS-1050 |  |  |  |  | -91.4d | 0d | Engineer & Technician [370 h] |  |  | MKH2-02-002-ABS-1040 | 0 | 0 | G1110 |  | As Buil |
| CON-LEG101-ABS-1100 |  | As-Built DWGs Submittal for Road Lighting | 12d | 2028-01-15 | 2028-01-27 | CON-LEG101-TC-1100 |  |  |  |  | -80d | 0d | Engineer & Technician [370 h] |  |  | MKH2-02-002-ABS-1060 | 0 | 0 | G1220 |  | As Buil |
| CON-LEG101-ABS-1000 |  | As-Built DWGs Submittal for Telecommunications Work | 12d | 2028-01-19 | 2028-02-02 | CON-LEG101-TC-1000 |  |  |  |  | -82.2d | 0d | Engineer & Technician [365 h] |  |  | MKH2-02-002-ABS-1000 | 0 | 0 | G1070 |  | As Buil |
| CON-LEG101-ABS-1070 |  | As-Built DWGs Submittal for CCTV feeding system and GSM | 8d | 2028-01-23 | 2028-02-01 | CON-LEG101-TC-1070 |  |  |  |  | -78.8d | 0d | Engineer & Technician [370 h] |  |  | MKH2-02-002-ABS-1060 | 0 | 0 | G1190 |  | As Buil |
| CON-LEG101-ABS-1010 |  | As-Built DWGs Submittal for Electrical Network | 12d | 2028-01-27 | 2028-02-10 | CON-LEG101-TC-1010, CON-LEG101-ABS-1040 |  |  |  |  | -91.4d | 12d | Engineer & Technician [365 h] |  |  | MKH2-02-002-ABS-1010 | 0 | 0 | G1080 |  | As Buil |
| CON-LEG101-ABS-1120 |  | As-Built DWGs Submittal for Earthing System | 5d | 2028-01-29 | 2028-02-02 | CON-LEG101-TC-1120 |  |  |  |  | -80d | 0d | Engineer & Technician [370 h] |  |  | MKH2-02-002-ABS-1060 | 0 | 0 | G1240 |  | As Buil |
| CON-LEG101-ABS-1090 |  | As-Built DWGs Submittal for Irrigation and Landscape | 5d | 2028-05-11 | 2028-05-16 | CON-LEG101-TC-1090 |  |  |  |  | -169d | 0d | Engineer & Technician [370 h] |  |  | MKH2-02-002-ABS-1060 | 0 | 0 | G1210 |  | As Buil |

| ID | WBS | Activity | Duration | Start | Finish | Predecessors | Total float | Free float | Resources | USERTEXT | Weight 1 | Total Weight % | Mapping Sheet Activity ID | JEDDAH 1 - Area Name |
| --- | --- | --- | --- | --- | --- | --- | --- | --- | --- | --- | --- | --- | --- | --- |
|  | 2 | **As-Built DWGs Approval** |  | 2027-12-20 | 2028-05-22 |  |  |  |  |  |  |  |  |  |
| CON-LEG101-ABA-1080 |  | As- Built DWGs Approval for Fence & Gate | 5d | 2027-12-20 | 2027-12-26 | CON-LEG101-ABS-1080 | -41.5d | 127.5d | Engineer & Technician [388 h] | MKH2-02-002-ABA-1060 | 0 | 0 | G1260 | As Buil |
| CON-LEG101-ABA-1110 |  | As- Built DWGs Approval for Road Works | 10d | 2028-01-09 | 2028-01-20 | CON-LEG101-ABS-1110 | -103.4d | 0d | Engineer & Technician [388 h] | MKH2-02-002-ABA-1060 | 0 | 0 | G1290 | As Buil |
| CON-LEG101-ABA-1020 |  | As- Built DWGs Approval for Public Water Utility Distribution | 10d | 2028-01-20 | 2028-02-01 | CON-LEG101-ABS-1020, CON-LEG101-ABA-1110 | -103.4d | 0d | Engineer & Technician [388 h] | MKH2-02-002-ABA-1020 | 0 | 0 | G1020 | As Buil |
| CON-LEG101-ABA-1030 |  | As- Built DWGs Approval for TSE Network | 10d | 2028-01-24 | 2028-02-05 | CON-LEG101-ABS-1030 | -86.4d | 17d | Engineer & Technician [388 h] | MKH2-02-002-ABA-1030 | 0 | 0 | G1030 | As Buil |
| CON-LEG101-ABA-1100 |  | As- Built DWGs Approval for Road Lighting | 10d | 2028-01-29 | 2028-02-08 | CON-LEG101-ABS-1100 | -80d | 89d | Engineer & Technician [388 h] | MKH2-02-002-ABA-1060 | 0 | 0 | G1280 | As Buil |
| CON-LEG101-ABA-1050 |  | As- Built DWGs Approval for Stormwater Utilities | 10d | 2028-02-01 | 2028-02-13 | CON-LEG101-ABS-1050, CON-LEG101-ABA-1020 | -103.4d | 0d | Engineer & Technician [388 h] | MKH2-02-002-ABA-1050 | 0 | 0 | G1050 | As Buil |
| CON-LEG101-ABA-1070 |  | As- Built DWGs Approval for CCTV feeding system and GSM | 5d | 2028-02-01 | 2028-02-07 | CON-LEG101-ABS-1070 | -78.8d | 90.2d | Engineer & Technician [388 h] | MKH2-02-002-ABA-1060 | 0 | 0 | G1250 | As Buil |
| CON-LEG101-ABA-1000 |  | As- Built DWGs Approval for Telecommunications Work | 8d | 2028-02-02 | 2028-02-12 | CON-LEG101-ABS-1000 | -82.2d | 86.8d | Engineer & Technician [388 h] | MKH2-02-002-ABA-1000 | 0 | 0 | G1000 | As Buil |
| CON-LEG101-ABA-1120 |  | As- Built DWGs Approval for Earthing System | 5d | 2028-02-03 | 2028-02-08 | CON-LEG101-ABS-1120 | -80d | 89d | Engineer & Technician [388 h] | MKH2-02-002-ABA-1060 | 0 | 0 | G1300 | As Buil |
| CON-LEG101-ABA-1060 |  | As- Built DWGs Approval for Bridge Work | 10d | 2028-02-13 | 2028-02-24 | CON-LEG101-ABS-1060, CON-LEG101-ABA-1050 | -103.4d | 0d | Engineer & Technician [388 h] | MKH2-02-002-ABA-1060 | 0 | 0 | G1060 | As Buil |
| CON-LEG101-ABA-1010 |  | As- Built DWGs Approval for Electrical Network | 10d | 2028-02-24 | 2028-03-07 | CON-LEG101-ABS-1010, CON-LEG101-ABA-1060, CON-LEG101-ABA-1030 | -103.4d | 65.6d | Engineer & Technician [388 h] | MKH2-02-002-ABA-1010 | 0 | 0 | G1010 | As Buil |
| CON-LEG101-ABA-1040 |  | As- Built DWGs Approval for Sanitary Sewerage | 10d | 2028-02-24 | 2028-03-07 | CON-LEG101-ABS-1040, CON-LEG101-ABA-1050, CON-LEG101-ABA-1060, CON-LEG101-ABA-1030 | -103.4d | 65.6d | Engineer & Technician [388 h] | MKH2-02-002-ABA-1040 | 0 | 0 | G1040 | As Buil |
| CON-LEG101-ABA-1090 |  | As- Built DWGs Approval for Irrigation and Landscape | 5d | 2028-05-17 | 2028-05-22 | CON-LEG101-ABS-1090 | -169d | 0d | Engineer & Technician [388 h] | MKH2-02-002-ABA-1060 | 0 | 0 | G1270 | As Buil |
|  | 2 | **Demobilization** |  | 2028-05-23 | 2028-06-03 |  |  |  |  |  |  |  |  |  |
| CON-LEG101-DM-1000 |  | Demobilization of Manpower | 5d | 2028-05-23 | 2028-05-28 | CON-LEG101-ABA-1000, CON-LEG101-ABA-1010, CON-LEG101-ABA-1020, CON-LEG101-ABA-1030, CON-LEG101-ABA-1040, CON-LEG101-ABA-1050, CON-LEG101-ABA-1060, CON-LEG101-ABA-1070, CON-LEG101-ABA-1080, CON-LEG101-ABA-1090, CON-LEG101-ABA-1100, CON-LEG101-ABA-1110, CON-LEG101-ABA-1120 | -169d | 0d | Labor [705 h] | MKH2-02-002-DM-1000 | 0 | 0 | G1140 | Close |
| CON-LEG101-DM-1010 |  | Removal of Equipment from Site | 5d | 2028-05-23 | 2028-05-28 | CON-LEG101-ABA-1000, CON-LEG101-ABA-1010, CON-LEG101-ABA-1020, CON-LEG101-ABA-1030, CON-LEG101-ABA-1040, CON-LEG101-ABA-1050, CON-LEG101-ABA-1060, CON-LEG101-ABA-1070, CON-LEG101-ABA-1080, CON-LEG101-ABA-1090, CON-LEG101-ABA-1100, CON-LEG101-ABA-1110, CON-LEG101-ABA-1120 | -169d | 0d | Labor [705 h] | MKH2-02-002-DM-1010 | 0 | 0 | G1150 | Close |
| CON-LEG101-DM-1020 |  | Site Clean Up | 5d | 2028-05-23 | 2028-05-28 | CON-LEG101-ABA-1000, CON-LEG101-ABA-1010, CON-LEG101-ABA-1020, CON-LEG101-ABA-1030, CON-LEG101-ABA-1040, CON-LEG101-ABA-1050, CON-LEG101-ABA-1060, CON-LEG101-ABA-1070, CON-LEG101-ABA-1080, CON-LEG101-ABA-1090, CON-LEG101-ABA-1100, CON-LEG101-ABA-1110, CON-LEG101-ABA-1120 | -169d | 0d | Labor [705 h] | MKH2-02-002-DM-1020 | 0 | 0 | G1160 | Close |
| CON-LEG101-DM-1030 |  | Removal of Site Offices and Structures | 5d | 2028-05-23 | 2028-05-28 | CON-LEG101-ABA-1000, CON-LEG101-ABA-1010, CON-LEG101-ABA-1020, CON-LEG101-ABA-1030, CON-LEG101-ABA-1040, CON-LEG101-ABA-1050, CON-LEG101-ABA-1060, CON-LEG101-ABA-1070, CON-LEG101-ABA-1080, CON-LEG101-ABA-1090, CON-LEG101-ABA-1100, CON-LEG101-ABA-1110, CON-LEG101-ABA-1120 | -169d | 0d | Labor [705 h] | MKH2-02-002-DM-1030 | 0 | 0 | G1170 | Close |
| CON-LEG101-DM-1040 |  | Restoration of Ground Surfaces | 5d | 2028-05-29 | 2028-06-03 | CON-LEG101-DM-1030, CON-LEG101-DM-1020, CON-LEG101-DM-1010, CON-LEG101-DM-1000 | -169d | 0d | Labor [705 h] | MKH2-02-002-DM-1040 | 0 | 0 | G1180 | Close |

## Activity codes

| Code | Value | Meaning |
| --- | --- | --- |
| JEDDAH 1 - Area Name | As Buil | As Built |
| JEDDAH 1 - Area Name | Close | Close-out |
| JEDDAH 1 - Area Name | Demolit | Demolition |
| JEDDAH 1 - Area Name | L01 -01 | Local - 01 - S01 |
| JEDDAH 1 - Area Name | L01 -02 | Local - 01 - S02 |
| JEDDAH 1 - Area Name | L01-03 | Local - 01 - S03 |
| JEDDAH 1 - Area Name | L02 | Local - 02 |
| JEDDAH 1 - Area Name | L03 | Local - 03 |
| JEDDAH 1 - Area Name | L04 | Local - 04 |
| JEDDAH 1 - Area Name | L05 | Local - 05 |
| JEDDAH 1 - Area Name | L06 | Local - 06 |
| JEDDAH 1 - Area Name | L07 | Local - 07 |
| JEDDAH 1 - Area Name | L08 | Local - 08 |
| JEDDAH 1 - Area Name | Landsca | Landscape area |
| JEDDAH 1 - Area Name | Long | Long Lead Item |
| JEDDAH 1 - Area Name | MIle | Milestone |
| JEDDAH 1 - Area Name | Materia | Material |
| JEDDAH 1 - Area Name | Method | Method Statement |
| JEDDAH 1 - Area Name | Mobliza | Moblization |
| JEDDAH 1 - Area Name | Out Sid | Out Side Boundary |
| JEDDAH 1 - Area Name | SD | Shop Drawing |
| JEDDAH 1 - Area Name | Short | Short lead Item |
| JEDDAH 1 - Area Name | Test | Testing |
| Responsibilities | EN | Engineering Department |
