# ADDITIONAL DEVELOPMENT IN TABOUK INDUSTRIAL CITY

Schedule from Primavera P6, 2025-09-04 to 2027-10-07, data date 2026-10-19, costs in USD, A marks actual dates.
Must finish by 2027-09-03

## Calendars

- FINAL TABUK: Mon-Thu 08:00-12:00, 13:00-17:00; Fri off; Sat-Sun 08:00-12:00, 13:00-17:00. Exceptions (off unless hours are given): 2027-09-03 08:00-16:00.

## Resources

| Resource | Group | Rate |
| --- | --- | --- |
| DUMP TRUCK | equipment |  |
| WATER TANKER | equipment |  |
| EXCAVATOR | equipment |  |
| GRADER | equipment |  |
| GRADER OPERATOR | labor |  |
| DUMP TRUCK DRIVER | labor |  |
| WATER TANKER DRIVER | labor |  |
| EXCAVATOR OPERATOR | labor |  |
| COST | material | 1 |
| LABOR | labor |  |
| ROLEER | equipment |  |
| ROLLER OPERATOR | labor |  |
| MC1 sprinker | equipment |  |
| MC DRIVER | labor |  |
| MILLING MACHINE | equipment |  |
| WHEEL ROLLER | equipment |  |
| MILLING MACHINE OPERATOR | labor |  |
| WHEEL ROLLER OPERATOR | labor |  |
| ELECTRACIAN | labor |  |
| CRANE | equipment |  |
| CRANE OPERATOR | labor |  |
| COMPACTOR | equipment |  |
| PLUMBER | labor |  |
| CONCRET MIXER | equipment |  |
| STEEL FIXER | labor |  |
| CARPENTER | labor |  |
| MASON | labor |  |
| CONCRET MIXER OPERATOR | labor |  |

## Schedule

| ID | WBS | Activity | Type | Duration | Start | Finish | Predecessors | Complete | Planned start | Planned finish | Total float | Free float | Constraint |
| --- | --- | --- | --- | --- | --- | --- | --- | --- | --- | --- | --- | --- | --- |
|  | GENERAL | **MILESTONS** |  |  | 2025-09-04 | 2027-10-07 |  |  |  |  |  |  |  |
|  | 2 | **CONTRACTUAL MILESTONES** |  |  | 2025-09-04 | 2027-10-07 |  |  |  |  |  |  |  |
| TAGNCM0001 |  | Project Start | milestone | 0d | 2025-09-04 A | 2025-09-04 A |  | 100% |  |  |  |  |  |
| TAGNCM0002 |  | Site Hand Over | milestone | 0d | 2025-09-04 A | 2025-09-04 A | TAGNCM0001 SS | 100% |  |  |  |  |  |
| TAGNCM0003 |  | Project finish | milestone | 0d | 2027-10-07 | 2027-10-07 | TAGNML0013 FF, TAGNML0014 FF, TAGNML0015 FF, TAGNML0016 FF, TAGNML0017 FF, TAGNML0018 FF, TAGNML0019 FF, TAGNML0020 FF, TAPCDZ00000032 FF, TAGNZM0004 FF, TAGNZM0006 FF, TAGNML0032 FF |  |  |  | -29.3d | 0d |  |
|  | 1 | **NET WORK MILESTONES** |  |  | 2025-10-11 | 2027-10-04 |  |  |  |  |  |  |  |
| TAGNML0004 |  | Start Road Works | milestone | 0d | 2025-10-11 A | 2025-10-11 A | TAGNCM0002 SS, TAGNPS0001, TAGNPS0002 SS | 100% |  |  |  |  |  |
| TAGNML0011 |  | Start Sewerage Networks | milestone | 0d | 2025-11-22 A | 2025-11-22 A | TAGNCM0002 SS, TAENMSSW0002 | 100% |  |  |  |  |  |
| TAGNML0012 |  | Start Storm Water Drainage Networks | milestone | 0d | 2025-12-31 A | 2025-12-31 A | TAGNCM0002 SS, TAENMSST0002, TAENMSST0004 | 100% |  |  |  |  |  |
| TAGNML0022 |  | Start works for Amana Road | milestone | 0d | 2026-03-15 A | 2026-03-15 A | TAGNML0004 SS | 100% |  |  |  |  | start on 2026-01-25 |
| TAGNML0009 |  | Start Potable Water Networks | milestone | 0d | 2026-04-01 A | 2026-04-01 A | TAGNCM0002 SS, TAENMSPT0002 | 100% |  |  |  |  |  |
| TAGNML0010 |  | Start TSE Networks | milestone | 0d | 2026-04-01 A | 2026-04-01 A | TAGNCM0002 SS, TAENMSTS0002 | 100% |  |  |  |  |  |
| TAGNML0005 |  | Start Electrical Works | milestone | 0d | 2026-05-12 A | 2026-05-12 A | TAGNCM0002 SS | 100% |  |  |  |  |  |
| TAGNML0006 |  | Start Teleommunications Works | milestone | 0d | 2026-06-18 A | 2026-06-18 A | TAGNCM0002 SS, TAENMSTC0002 | 100% | 2026-06-25 | 2026-06-25 |  |  |  |
| TAGNML0008 |  | Start CCTV Works | milestone | 0d | 2026-10-19 | 2026-10-19 | TAGNCM0002 SS, TAENMSCC0002 |  |  |  | -8d | 7.55d |  |
| TAGNML0019 |  | Finish Sewerage Networks | milestone | 0d | 2027-03-27 | 2027-03-27 | TAEXSWCL030006 FF, TAEXSWCL040006 FF, TACOFTAD0023 FF |  |  |  | 138.71d | 168.01d |  |
| TAGNML0017 |  | Finish Potable Water Networks | milestone | 0d | 2027-06-10 | 2027-06-10 | TAEXPTCC030007 FF, TACOFTFT0021 FF, TAPQDVPT00031 FF |  |  |  | 73.04d | 102.34d |  |
| TAGNML0018 |  | Finish TSE Networks | milestone | 0d | 2027-06-16 | 2027-06-16 | TAEXTSCC030005 FF, TAENMSTS0002 FF, TACOFTFT0022 FF, TAPQDVTS00021 FF |  |  |  | 68.55d | 97.85d |  |
| TAGNML0020 |  | Finish Storm Water Drainage Networks | milestone | 0d | 2027-08-12 | 2027-08-12 | TAEXSTCC030007 FF, TAENMSST0002 FF, TAENMSST0004 FF, TACOFTAD0024 FF, TAEXSTCSWP00141 FF, TAEXSTCSWP0010 FF |  |  |  | 19.97d | 49.27d |  |
| TAGNML0032 |  | Finish works for Amana Road | milestone | 0d | 2027-08-22 | 2027-08-22 | TAGNML0022 SS+90d, TAEXRDCA050007 FF, TAEXRDCA030004 FF, TAEXRDCA050006 FF |  |  |  | 11.84d | 41.14d |  |
| TAGNML0015 |  | Finish Teleommunications Works | milestone | 0d | 2027-09-08 | 2027-09-08 | TACOFTAD0019 FF |  |  |  | -4.27d | 25.03d |  |
| TAGNML0016 |  | Finish CCTV Works | milestone | 0d | 2027-09-18 | 2027-09-18 | TAENMSCC0002 FF, TACOFTFT0020 FF |  |  |  | -12.55d | 16.75d |  |
| TAGNML0013 |  | Finish Road Works | milestone | 0d | 2027-10-04 | 2027-10-04 | TAENMSRD0004 FF, TAENMSRD0006 FF, TAPQDVRD0007 FF, TACOFTAD0017 FF, TAGNMZ0009 FF, TAPQDVRD0005 FF, TAPQDVRD00091 FF |  |  |  | -26.1d | 3.2d |  |
| TAGNML0014 |  | Finish Electrical Works | milestone | 0d | 2027-10-04 | 2027-10-04 | TAENMSEL0002 FF, TACOFTAD0018 FF, TAEXELCU260007 FF |  |  |  | -26.81d | 2.49d |  |

| ID | WBS | Activity | Type | Duration | Start | Finish | Predecessors | Complete | Remaining | Planned start | Planned finish | Total float | Free float | Resources |
| --- | --- | --- | --- | --- | --- | --- | --- | --- | --- | --- | --- | --- | --- | --- |
|  | 4 | **ZONES MILESTONES** |  |  | 2025-09-04 | 2027-07-24 |  |  |  |  |  |  |  |  |
| TAGNZM0003 |  | Start Zone 3 | milestone | 0d | 2025-09-04 A | 2025-09-04 A | TAEXSTCSWP0001 SS | 100% |  |  |  |  |  |  |
| TAGNZM0002 |  | Start Zone 2 | milestone | 0d | 2025-10-11 A | 2025-10-11 A | TAEXRDCC010001 SS, TAEXRDC L020001 | 100% |  |  |  |  |  |  |
| TAGNZM0001 |  | Start Zone 1 | milestone | 0d | 2025-10-14 A | 2025-10-14 A | TAGNPS0003 | 100% |  |  |  |  |  |  |
| TAGNZM0006 |  | Finish Zone 3 | milestone | 0d | 2027-06-05 | 2027-06-05 | TAEXPTCU290008 FF |  |  |  |  | 78.04d | 107.34d |  |
| TAGNZM0004 |  | Finish Zone 1 | milestone | 0d | 2027-06-30 | 2027-06-30 | TAEXRDCC020012 FF |  |  |  |  | 56.9d | 86.2d |  |
| TAGNZM0005 |  | Finish Zone 2 | milestone | 0d | 2027-07-24 | 2027-07-24 | TAEXRDC L020012 FF |  |  |  |  | 11.84d | 0d |  |
|  | 3 | **PRELIMINARY SUBMITTALS** |  |  | 2025-09-09 | 2026-11-17 |  |  |  |  |  |  |  |  |
| TAGNPS0001 |  | Initial survying Review and approval |  | 28d | 2025-09-09 A | 2025-10-11 A | TAGNMZ0001 SS+15d | 100% |  |  |  |  |  |  |
| TAGNPS0005 |  | HSE & Qui;ity Plan |  | 44d | 2025-10-01 A | 2025-11-20 A | TAGNMZ0002 SS+10d | 100% |  |  |  |  |  |  |
| TAGNPS0003 |  | Base line Schedule Review and approval |  | 21d | 2025-10-09 A | 2025-11-02 A | TAGNMZ0001 SS+15d | 100% |  |  |  |  |  |  |
| TAGNPS0002 |  | Shop drawing complete |  | 167d | 2025-11-20 A | 2026-11-17 | TAGNMZ0002 SS | 85% | 25.05d | 2025-11-20 | 2026-06-02 | 6.2d | 0d |  |
|  | 5 | **MOBILIZATION** |  |  | 2025-09-04 | 2027-08-31 |  |  |  |  |  |  |  |  |
|  | 2 | **Site Facilites and Offices** |  |  | 2025-09-04 | 2027-08-31 |  |  |  |  |  |  |  |  |
| TAGNMZ0001 |  | Mobilization works for Manpower and Equipment |  | 112d | 2025-09-04 A | 2026-01-12 A | TAGNCM0002 SS | 100% |  |  |  |  |  |  |
| TAGNMZ0002 |  | Office Ready |  | 82d | 2025-09-07 A | 2025-12-10 A | TAGNMZ0001 SS+21d | 100% |  |  |  |  |  | DUMP TRUCK [240 h]; WATER TANKER [240 h]; EXCAVATOR [240 h]; GRADER [240 h]; GRADER OPERATOR [240 h]; DUMP TRUCK DRIVER [240 h]; WATER TANKER DRIVER [240 h]; EXCAVATOR OPERATOR [240 h] |
| TAGNMZ0007 |  | Office Operation |  | 230.5d | 2025-09-07 A | 2026-06-02 A | TAGNMZ0002, TAGNMZ0006 | 100% |  |  |  |  |  |  |
| TAGNMZ0003 |  | Housing portable cabins assembling |  | 42d | 2025-09-10 A | 2025-10-28 A | TAGNMZ0001 SS+5d | 100% |  |  |  |  |  |  |
| TAGNMZ0004 |  | laboratory and storage facilities |  | 58d | 2025-10-08 A | 2025-12-14 A | TAGNMZ0001 FS+25d, TAGNMZ0003, TAGNPS0005 | 100% |  |  |  |  |  |  |
| TAGNMZ0006 |  | Material Store with Fence |  | 23d | 2025-10-12 A | 2025-11-07 A | TAGNMZ0005 | 100% |  | 2025-10-12 | 2025-11-06 |  |  | ROLEER [160 h]; DUMP TRUCK [160 h]; EXCAVATOR [160 h]; GRADER [160 h]; GRADER OPERATOR [160 h]; DUMP TRUCK DRIVER [160 h]; EXCAVATOR OPERATOR [160 h]; ROLLER OPERATOR [160 h] |
| TAGNMZ0005 |  | Project Sign manufacturing and installation |  | 35d | 2025-11-01 A | 2025-12-10 A | TAGNMZ0001 SS+15d, TAGNMZ0001, TAGNMZ0004 | 100% |  |  |  |  |  |  |
| TAGNMZ9 |  | Office Operation part 01 |  | 383d | 2026-06-21 A | 2027-08-31 | TAGNMZ0007 | 29% | 271.01d | 2026-06-22 | 2027-09-09 | -6.01d | 23.29d |  |
|  | 1 | **Preliminaries** |  |  | 2025-11-25 | 2026-01-05 |  |  |  |  |  |  |  |  |
| TAGNMZ0008 |  | Prepare & Submit Soil Investigation |  | 34d | 2025-11-25 A | 2026-01-03 A | TAGNMZ0001 | 100% |  |  |  |  |  |  |
| TAGNMZ0009 |  | Review and Approval soil Investigation |  | 33d | 2025-11-29 A | 2026-01-05 A | TAGNMZ0008 | 100% |  |  |  |  |  |  |

| ID | WBS | Activity | Duration | Start | Finish | Predecessors | Complete | Planned start | Planned finish | Resources | Cost | Actual cost |
| --- | --- | --- | --- | --- | --- | --- | --- | --- | --- | --- | --- | --- |
|  | 6 | **ENGINEERING** |  | 2025-10-04 | 2026-06-02 |  |  |  |  |  |  |  |
|  | 2 | **Shop Drawings Submittls** |  | 2025-10-21 | 2026-06-02 |  |  |  |  |  |  |  |
|  | 9 | **Shop Drawing for Roads** |  | 2025-10-28 | 2026-06-02 |  |  |  |  |  |  |  |
| TAENSDRD0001 |  | Roads Shop dwg. Prepare & Submit | 187d | 2025-10-28 A | 2026-06-02 A | TAGNMZ0001 SS | 100% |  |  | COST [737443] | 737,443.24 | 737,443.24 |
| TAENSDRD0002 |  | Roads Shop dwg. Review & Approval | 132.48d | 2025-12-30 A | 2026-06-02 A | TAENSDRD0001 FF | 100% |  |  |  |  |  |
|  | 1 | **Shop Drawing for Electrical Works** |  | 2025-12-31 | 2026-01-21 |  |  |  |  |  |  |  |
| TAENSDEL0001 |  | Shop dwg. Prepare ,submitt | 19d | 2025-12-31 A | 2026-01-21 A | TAENSDRD0001, TAENSDTS0001 | 100% |  |  |  |  |  |
| TAENSDEL0002 |  | Shop dwg. Review and Approval | 14d | 2026-01-06 A | 2026-01-21 A | TAENSDEL0001 FF | 100% |  |  | COST [420000] | 420,000 | 420,000 |
|  | 2 | **Shop Drawing for Telecommunications** |  | 2026-01-21 | 2026-06-02 |  |  |  |  |  |  |  |
| TAENSDTL0001 |  | Shop dwg. Prepare and submitt | 113d | 2026-01-21 A | 2026-06-02 A | TAENSDEL0001 SS | 100% | 2026-01-21 | 2026-06-01 |  |  |  |
| TAENSDTL0002 |  | Shop dwg. Review and Approval | 105d | 2026-02-01 A | 2026-06-02 A | TAENSDTL0001 FF | 100% |  |  | COST [120000] | 120,000 | 120,000 |
|  | 3 | **Shop Drawing for CCTV Networks** |  | 2026-01-10 | 2026-01-14 |  |  |  |  |  |  |  |
| TAENSDCC0001 |  | Shop Dwg Prepare and Submit | 5d | 2026-01-10 A | 2026-01-14 A | TAENSDTL0001 SS | 100% |  |  |  |  |  |
| TAENSDCC0002 |  | Shop Dwg. Review and approval | 2d | 2026-01-13 A | 2026-01-14 A | TAENSDCC0001 FF | 100% |  |  | COST [129078] | 129,077.91 | 129,077.91 |
|  | 4 | **Shop Drawing for Potable Water** |  | 2025-11-02 | 2026-01-13 |  |  |  |  |  |  |  |
| TAENSDPT0001 |  | Shop dwg. Prepare and submitt | 63d | 2025-11-02 A | 2026-01-13 A | TAENSDST0001 | 100% |  |  | COST [222841] | 222,841.39 | 222,841.39 |
| TAENSDPT0002 |  | Shop dwg.Review and Approval | 2d | 2026-01-12 A | 2026-01-13 A | TAENSDPT0001 SS+15d | 100% |  |  |  |  |  |
|  | 5 | **Shop Drawing for TSE Networks** |  | 2025-11-02 | 2026-01-21 |  |  |  |  |  |  |  |
| TAENSDTS0001 |  | Shop dwg. Prepare and submitt | 70d | 2025-11-02 A | 2026-01-21 A | TAENSDPT0001 SS | 100% |  |  | COST [202255] | 202,254.99 | 202,254.99 |
| TAENSDTS0002 |  | Shop dwg. Review and Approval | 2d | 2026-01-20 A | 2026-01-21 A | TAENSDTS0001 FF+10d | 100% |  |  |  |  |  |
|  | 6 | **Shop Drawing for Sewerage Networks** |  | 2025-10-26 | 2026-02-28 |  |  |  |  |  |  |  |
| TAENSDSW0001 |  | Shop dwg. Prepare and Submitt | 108d | 2025-10-26 A | 2026-02-28 A | TAGNMZ0001 SS+2d | 100% |  |  | COST [1192635] | 1,192,635.06 | 1,192,635.06 |
| TAENSDSW0002 |  | Shop dwg. Review and Approval | 59d | 2025-12-22 A | 2026-02-28 A | TAENSDSW0001 | 100% |  |  |  |  |  |
|  | 7 | **Shop Drawing for Storm Networks** |  | 2025-10-21 | 2026-01-28 |  |  |  |  |  |  |  |
| TAENSDST0003 |  | Shop dwg. Prepare and submit For Ponds | 77d | 2025-10-21 A | 2026-01-18 A | TAGNMZ0001 SS+15d | 100% |  |  | COST [391153] | 391,152.56 | 391,152.56 |
| TAENSDST0005 |  | Shop dwg. Prepare and submit For Dike | 85d | 2025-10-22 A | 2026-01-28 A | TAGNMZ0001 SS+7d | 100% |  |  | COST [29365.1] | 29,365.1 | 29,365.1 |
| TAENSDST0001 |  | Shop dwg. Prepare and submit For Storm Networks | 73d | 2025-10-26 A | 2026-01-18 A | TAENSDSW0001 SS, TAENSDST0006 SS | 100% |  |  | COST [769266] | 769,265.61 | 769,265.61 |
| TAENSDST0002 |  | Shop Dwg.Review and approval for Storm Networks | 14d | 2026-01-03 A | 2026-01-18 A | TAENSDST0001 SS | 100% |  |  |  |  |  |
| TAENSDST0004 |  | Shop Dwg.Review and approval for Ponds | 4d | 2026-01-14 A | 2026-01-18 A | TAENSDST0003, TAENSDST0003 FF | 100% |  |  |  |  |  |
| TAENSDST0006 |  | Shop Dwg.Review and approval for Dike | 2d | 2026-01-27 A | 2026-01-28 A | TAENSDST0005, TAENSDST0005 FF | 100% |  |  |  |  |  |

| ID | WBS | Activity | Duration | Start | Finish | Predecessors | Complete | Planned start | Planned finish |
| --- | --- | --- | --- | --- | --- | --- | --- | --- | --- |
|  | 3 | **Prequalification for Suppliers** |  | 2025-10-04 | 2026-04-23 |  |  |  |  |
|  | 9 | **Submittle of Material and Prequalification Road Works** |  | 2025-10-04 | 2026-04-18 |  |  |  |  |
| TAENPQRD0005 |  | Submit Prequalification for Laboratory testing | 37d | 2025-10-04 A | 2025-11-15 A | TAGNMZ0001 | 100% |  |  |
| TAENPQRD0006 |  | Prequalification Approval for Laboratory testing | 2d | 2025-10-16 A | 2025-10-18 A | TAENPQRD0005 | 100% |  |  |
| TAENPQRD0001 |  | Submit Prequalification for Supplier Kerbs and Interlocking | 1d | 2025-10-22 A | 2025-10-22 A | TAENSDRD0002 FS+51d | 100% |  |  |
| TAENPQRD0002 |  | Prequalification Approval for Kerps and Interlocking Suppliers | 11d | 2025-10-22 A | 2025-11-03 A | TAENPQRD0001 | 100% |  |  |
| TAENPQRD0003 |  | Submit Prequalification for Supplier Road Marking | 3d | 2026-04-15 A | 2026-04-18 A | TAENSDRD0002 FS+51d | 100% |  |  |
| TAENPQRD0004 |  | Prequalification Approval for Road Marking | 2d | 2026-04-16 A | 2026-04-18 A | TAENPQRD0003 | 100% |  |  |
|  | 1 | **Submittle of Material and Prequalification for Electrical Works** |  | 2026-01-14 | 2026-03-16 |  |  |  |  |
| TAENPQEL0004 |  | Prequalification Approval for Unit Stations | 28d | 2026-01-14 A | 2026-02-15 A | TAENPQEL0003 FS+13d, TAENPQEL0003 FF | 100% |  |  |
| TAENPQEL0005 |  | Submit Prequalification for Lighting Poles | 2d | 2026-01-14 A | 2026-01-15 A | TAENSDEL0002, TAENPQEL0003 | 100% |  |  |
| TAENPQEL0007 |  | Submit Prequalification for Luminares | 2d | 2026-01-14 A | 2026-01-15 A | TAENSDEL0002, TAENPQEL0005 | 100% |  |  |
| TAENPQEL0008 |  | Prequalification Approval for Luminares | 2d | 2026-01-14 A | 2026-01-15 A | TAENPQEL0007 FS+13d | 100% |  |  |
| TAENPQEL0006 |  | Prequalification Approval for Lighting Poles | 1d | 2026-01-15 A | 2026-01-16 A | TAENPQEL0005 FS+13d, TAENPQEL0004 | 100% | 2026-01-15 | 2026-01-15 |
| TAENPQEL0011 |  | Submit Prequalification for Ducts | 2d | 2026-01-22 A | 2026-01-24 A | TAENSDEL0002, TAENPQEL0009 | 100% |  |  |
| TAENPQEL0012 |  | Prequalification Approval for Ducts | 2d | 2026-01-22 A | 2026-01-24 A | TAENPQEL0011 | 100% |  |  |
| TAENPQEL0001 |  | Submit Prequalification for Cables Suppliers | 2d | 2026-02-12 A | 2026-02-14 A | TAENPQRD0001, TAENPQTS0001 | 100% |  |  |
| TAENPQEL0003 |  | Submit Prequalification for Unit Stations | 2d | 2026-02-12 A | 2026-02-14 A | TAENSDEL0002 FS+61d | 100% |  |  |
| TAENPQEL0002 |  | Prequalification Approval for Cables Suppliers | 2d | 2026-02-14 A | 2026-02-15 A | TAENPQEL0001 | 100% |  |  |
| TAENPQEL0009 |  | Submit Prequalification for Precast Drawpits and Foundations | 1d | 2026-03-15 A | 2026-03-15 A | TAENSDEL0002, TAENPQEL0007 | 100% |  |  |
| TAENPQEL0010 |  | Prequalification Approval for Precast Drawpits and Foundations | 2d | 2026-03-15 A | 2026-03-16 A | TAENPQEL0009 FS+13d | 100% |  |  |
|  | 2 | **Submittle of Material and Prequalification for Telecommunications** |  | 2026-01-22 | 2026-01-24 |  |  |  |  |
| TAENPQTL0001 |  | Submit Prequalification for Ducts | 2d | 2026-01-22 A | 2026-01-24 A | TAENPQEL0001 | 100% |  |  |
| TAENPQTL0002 |  | Prequalification Approval for Ducts | 2d | 2026-01-22 A | 2026-01-24 A | TAENPQTL0001 | 100% |  |  |
| TAENPQTL0003 |  | Submit Prequalification for Manholes | 2d | 2026-01-22 A | 2026-01-24 A | TAENSDTL0002 FS+101d | 100% |  |  |
| TAENPQTL0004 |  | Prequalification Approval for Manholes | 2d | 2026-01-22 A | 2026-01-24 A | TAENPQTL0003 | 100% |  |  |

| ID | WBS | Activity | Duration | Start | Finish | Predecessors | Complete |
| --- | --- | --- | --- | --- | --- | --- | --- |
|  | 3 | **Submittle of Material and Prequalification for CCTV Networks** |  | 2026-01-26 | 2026-04-23 |  |  |
| TAENPQCC0001 |  | Prepare Material Submittle for CCTV System | 76d | 2026-01-26 A | 2026-04-23 A | TAENPQTL0001 | 100% |
| TAENPQCC0002 |  | Review and Approval for Material Submittle for CCTV System | 76d | 2026-01-26 A | 2026-04-23 A | TAENPQCC0001 | 100% |
|  | 4 | **Submittle of Material and Prequalification for Potable Water** |  | 2025-11-13 | 2025-11-19 |  |  |
| TAENPQPT0003 |  | Prepare Material Submittle for Valves | 1d | 2025-11-13 A | 2025-11-13 A | TAENSDPT0002 SS+58d | 100% |
| TAENPQPT0004 |  | Review and Approval of Material for Valves | 5d | 2025-11-13 A | 2025-11-18 A | TAENPQPT0003 | 100% |
| TAENPQPT0005 |  | Prepare Material Submittle for Fire Hydrant | 1d | 2025-11-13 A | 2025-11-13 A | TAENPQPT0003 | 100% |
| TAENPQPT0006 |  | Review and Approval of Material for Fire Hydrant | 6d | 2025-11-13 A | 2025-11-19 A | TAENPQPT0005 SS | 100% |
| TAENPQPT0001 |  | Prepare Material Submittle for HDPE Pipes | 3d | 2025-11-15 A | 2025-11-17 A | TAENPQST0001 | 100% |
| TAENPQPT0002 |  | Review and Approval of Material Submittle for HDPE Pipes | 3d | 2025-11-15 A | 2025-11-17 A | TAENPQPT0001 | 100% |
|  | 5 | **Submittle of Material and Prequalification for TSE Networks** |  | 2025-11-13 | 2025-11-24 |  |  |
| TAENPQTS0003 |  | Prepare Material Submittle for Valves | 1d | 2025-11-13 A | 2025-11-13 A | TAENSDTS0002 FS+58d | 100% |
| TAENPQTS0004 |  | Review and Approval of Material for Valves | 10d | 2025-11-13 A | 2025-11-24 A | TAENPQTS0003 | 100% |
| TAENPQTS0001 |  | Prepare Material Submittle for HDPE Pipes | 1d | 2025-11-15 A | 2025-11-15 A | TAENPQPT0001 | 100% |
| TAENPQTS0002 |  | Review and Approval of Material Submittle for HDPE Pipes | 3d | 2025-11-15 A | 2025-11-17 A | TAENPQTS0001 | 100% |
|  | 6 | **Submittle of Material and Prequalification for Sewerage Networks** |  | 2025-11-08 | 2025-11-13 |  |  |
| TAENPQSW0001 |  | Prepare Material Submittle for GRP Pipes | 6d | 2025-11-08 A | 2025-11-13 A | TAENSDSW0002 SS+38d | 100% |
| TAENPQSW0002 |  | Review and Approval of Material Submittle for GRP Pipes | 6d | 2025-11-08 A | 2025-11-13 A | TAENPQSW0001 | 100% |
| TAENPQSW0003 |  | Prepare Material Submittle for Manhole | 6d | 2025-11-08 A | 2025-11-13 A | TAENSDSW0002, TAENPQSW0001 | 100% |
| TAENPQSW0004 |  | Review and Approval of Material Submittle for Manhole | 6d | 2025-11-08 A | 2025-11-13 A | TAENPQSW0003 | 100% |
|  | 7 | **Submittle of Material and Prequalification for Storm Networks** |  | 2025-10-22 | 2025-11-17 |  |  |
| TAENPQST0011 |  | Prepare Material Submittle for Concrete Works at Ponds | 1d | 2025-10-22 A | 2025-10-22 A | TAENSDST0004 FS+30d | 100% |
| TAENPQST0012 |  | Review and Approval of Material Submittle for Concrete Works at Ponds | 11d | 2025-10-22 A | 2025-11-03 A | TAENPQST0011 | 100% |
| TAENPQST0001 |  | Prepare Material Submittle for GRP Pipes | 1d | 2025-11-08 A | 2025-11-08 A | TAENPQSW0001 | 100% |
| TAENPQST0002 |  | Review and Approval of Material Submittle for GRP Pipes | 6d | 2025-11-08 A | 2025-11-13 A | TAENPQST0001 | 100% |
| TAENPQST0005 |  | Prepare Material Submittle for Box Culvert | 1d | 2025-11-15 A | 2025-11-15 A | TAENSDST0002, TAENPQST0003 | 100% |
| TAENPQST0006 |  | Review and Approval of Material Submittle for Box Culvert | 3d | 2025-11-15 A | 2025-11-17 A | TAENPQST0005 FS+3d | 100% |
| TAENPQST0007 |  | Prepare Material Submittle for Catch Basin | 1d | 2025-11-15 A | 2025-11-15 A | TAENSDST0002, TAENPQST0005 | 100% |
| TAENPQST0008 |  | Review and Approval of Material Submittle for Catch Basin | 3d | 2025-11-15 A | 2025-11-17 A | TAENPQST0007 | 100% |
| TAENPQST0009 |  | Prepare Material Submittle for Precast Manhole | 1d | 2025-11-15 A | 2025-11-15 A | TAENSDST0002, TAENPQST0007 | 100% |
| TAENPQST0010 |  | Review and Approval of Material Submittle for Precast Manhole | 2d | 2025-11-15 A | 2025-11-16 A | TAENPQST0009 | 100% |
| TAENPQST0003 |  | Prepare Material Submittle for UPVC Pipes | 1d | 2025-11-16 A | 2025-11-16 A | TAENSDST0002 SS+53d | 100% |
| TAENPQST0004 |  | Review and Approval of Material Submittle for UPVC Pipes | 2d | 2025-11-16 A | 2025-11-17 A | TAENPQST0003 | 100% |

| ID | WBS | Activity | Duration | Start | Finish | Predecessors | Complete | Planned start | Planned finish |
| --- | --- | --- | --- | --- | --- | --- | --- | --- | --- |
|  | 4 | **Method Statement** |  | 2025-11-25 | 2026-04-18 |  |  |  |  |
|  | 9 | **Earth Works (Excavation & Backfilling)** |  | 2025-11-25 | 2025-11-29 |  |  |  |  |
| TAENMSRD0001 |  | Prepare and Submit MOS for Earth works | 4d | 2025-11-25 A | 2025-11-29 A | TAENSDRD0002 FS+51d | 100% |  |  |
| TAENMSRD0002 |  | Review and Approval MOS for Earth worksrs | 1d | 2025-11-28 A | 2025-11-29 A | TAENMSRD0001 | 100% | 2025-11-29 | 2025-11-29 |
|  | 8 | **Asphalt works** |  | 2025-12-06 | 2026-01-18 |  |  |  |  |
| TAENMSRD0003 |  | Prepare and Submit MOS for Asphalt works | 36d | 2025-12-06 A | 2026-01-15 A | TAENMSRD0001, TAENMSRD0002 | 100% |  |  |
| TAENMSRD0004 |  | Revies and Approval MOS for Asphalt works | 2d | 2026-01-17 A | 2026-01-18 A | TAENMSRD0003 | 100% |  |  |
|  | 10 | **Precast Concrete (Curbstone & Interlocking)** |  | 2026-04-15 | 2026-04-18 |  |  |  |  |
| TAENMSRD0005 |  | Prepare and Submit MOS for Curbstone and Interlocking | 2d | 2026-04-15 A | 2026-04-16 A | TAENMSRD0003 | 100% |  |  |
| TAENMSRD0006 |  | Review and Approval MOS for Curbstone and Interlocking | 2d | 2026-04-16 A | 2026-04-18 A | TAENMSRD0005 | 100% |  |  |
|  | 1 | **Street Lighting** |  | 2026-01-19 | 2026-01-21 |  |  |  |  |
| TAENMSEL0001 |  | Prepare and Submit MOS for Street Lighting | 2d | 2026-01-19 A | 2026-01-20 A | TAENMSRD0001, TAENSDEL0002 FS+100d | 100% |  |  |
| TAENMSEL0002 |  | Review and Approval MOS for Street Lighting | 2d | 2026-01-20 A | 2026-01-21 A | TAENMSEL0001 | 100% |  |  |
|  | 2 | **Telecommunications** |  | 2026-02-07 | 2026-02-08 |  |  |  |  |
| TAENMSTC0001 |  | Prepare and Submit MOS for TC | 2d | 2026-02-07 A | 2026-02-08 A | TAENMSEL0001 | 100% |  |  |
| TAENMSTC0002 |  | Review and Approval MOS for TC | 2d | 2026-02-07 A | 2026-02-08 A | TAENMSTC0001 | 100% |  |  |
|  | 3 | **CCTV Networks** |  | 2026-02-07 | 2026-02-08 |  |  |  |  |
| TAENMSCC0001 |  | Prepare and Submit MOS for CCTV System | 2d | 2026-02-07 A | 2026-02-08 A | TAENMSTC0001 | 100% |  |  |
| TAENMSCC0002 |  | Review and Approval MOS for CCTV Syestem | 2d | 2026-02-07 A | 2026-02-08 A | TAENMSCC0001 | 100% |  |  |
|  | 4 | **Potable Water Networks** |  | 2025-11-25 | 2025-11-26 |  |  |  |  |
| TAENMSPT0001 |  | Prepare and Submit MOS for Potable Network | 2d | 2025-11-25 A | 2025-11-26 A | TAENSDPT0002 FS+58d | 100% |  |  |
| TAENMSPT0002 |  | Review and Approval MOS for Potable Networks | 2d | 2025-11-25 A | 2025-11-26 A | TAENMSPT0001 | 100% |  |  |
|  | 5 | **TSE Networks** |  | 2026-03-01 | 2026-03-08 |  |  |  |  |
| TAENMSTS0001 |  | Prepare and Submit MOS for TSE Network | 6d | 2026-03-01 A | 2026-03-07 A | TAENSDTS0002 FS+58d | 100% |  |  |
| TAENMSTS0002 |  | Review and Approval MOS for TSENetworks | 7d | 2026-03-01 A | 2026-03-08 A | TAENMSTS0001 | 100% |  |  |

| ID | WBS | Activity | Duration | Start | Finish | Predecessors | Complete | Planned start | Planned finish |
| --- | --- | --- | --- | --- | --- | --- | --- | --- | --- |
|  | 6 | **Sewerage Networks** |  | 2025-12-16 | 2025-12-18 |  |  |  |  |
| TAENMSSW0001 |  | Prepare and Submit MOS for Sewer Network | 3d | 2025-12-16 A | 2025-12-18 A | TAENSDSW0002 FS+38d | 100% |  |  |
| TAENMSSW0002 |  | Review and Approval MOS for Sewer Networks | 2d | 2025-12-17 A | 2025-12-18 A | TAENMSSW0001 | 100% |  |  |
|  | 7 | **Storm Networks** |  | 2025-12-20 | 2025-12-24 |  |  |  |  |
| TAENMSST0001 |  | Prepare and Submit MOS for Storm Network | 2d | 2025-12-20 A | 2025-12-21 A | TAENSDST0002 FS+53d | 100% |  |  |
| TAENMSST0002 |  | Review and Approval MOS for Storm Networks | 5d | 2025-12-20 A | 2025-12-24 A | TAENMSST0001 | 100% |  |  |
|  | 11 | **Precast Box Culvert** |  | 2025-12-20 | 2025-12-24 |  |  |  |  |
| TAENMSST0003 |  | Prepare and Submit MOS for Box Culvert | 2d | 2025-12-20 A | 2025-12-21 A | TAENMSST0001 | 100% |  |  |
| TAENMSST0004 |  | Review and Approval MOS Box Culvert | 5d | 2025-12-20 A | 2025-12-24 A | TAENMSST0003 | 100% |  |  |
|  | 17 | **PROCUREMENT** |  | 2025-10-27 | 2027-10-04 |  |  |  |  |
|  | 8 | **Material Purchase Order** |  | 2025-11-01 | 2026-07-25 |  |  |  |  |
|  | 9 | **Material Purchase Order for Road Works** |  | 2025-11-01 | 2026-06-02 |  |  |  |  |
| TAPQPORD0001 |  | Roads material Approved suppliers and issue po | 183.48d | 2025-11-01 A | 2026-06-02 A | TAENSDRD0001 FF, TAENSDRD0002 FS+63d, TAENPQRD0002, TAENPQRD0004 | 100% |  |  |
|  | 1 | **Material Purchase Order for Electrical Works** |  | 2026-04-23 | 2026-07-02 |  |  |  |  |
| TAPQPOEL0001 |  | Electrical material Approved suppliers and issue po | 35d | 2026-04-23 A | 2026-06-02 A | TAENSDEL0001, TAENSDEL0002, TAENPQEL0002, TAENPQEL0004, TAENPQEL0006, TAENPQEL0008, TAENPQEL0010, TAENPQEL0012 FS+17d | 100% |  |  |
| TAPQPOEL1 |  | Electrical material Approved suppliers and issue po Part 01 | 7d | 2026-06-20 A | 2026-07-02 A | TAPQPOEL0001 | 100% | 2026-06-22 | 2026-06-29 |
|  | 2 | **Material Purchase Order for Telecommunication** |  | 2026-06-20 | 2026-07-22 |  |  |  |  |
| TAPQPOTC0001 |  | HDPE material Approved suppliers and issue po | 37d | 2026-06-20 A | 2026-07-22 A | TAENSDTL0001, TAENSDTL0002, TAENPQTL0002, TAENSDTL0002 FF, TAENPQTL0004 | 100% | 2026-06-22 | 2026-08-03 |
|  | 3 | **Material Purchase Order for CCTV Networks** |  | 2026-07-16 | 2026-07-25 |  |  |  |  |
| TAPQPOCC0001 |  | CCTV material Approved suppliers and issue po | 62d | 2026-07-16 A | 2026-07-25 A | TAENSDCC0001, TAENSDCC0002 FS+141d, TAENPQCC0002 | 100% | 2026-07-16 | 2026-09-26 |
|  | 4 | **Material Purchase Order for Potable Networks** |  | 2026-01-03 | 2026-05-24 |  |  |  |  |
| TAPQPOPT0001 |  | Potable Water material Approved suppliers and issue po | 122d | 2026-01-03 A | 2026-05-24 A | TAENSDPT0001, TAENSDPT0002 FS+60d, TAENPQPT0002, TAENPQPT0004, TAENPQPT0006 | 100% |  |  |
|  | 5 | **Material Purchase Order for TSE Networks** |  | 2026-01-03 | 2026-05-24 |  |  |  |  |
| TAPQPOTS0001 |  | TSE material Approved suppliers and issue po | 122d | 2026-01-03 A | 2026-05-24 A | TAENSDTS0001, TAENSDTS0002 FS+58d, TAENPQTS0002, TAENPQTS0004 FF | 100% |  |  |

| ID | WBS | Activity | Duration | Start | Finish | Predecessors | Complete | Remaining | Planned start | Planned finish | Total float | Free float | Resources | Cost | Actual cost |
| --- | --- | --- | --- | --- | --- | --- | --- | --- | --- | --- | --- | --- | --- | --- | --- |
|  | 6 | **Material Purchase Order for Sewrage Networks** |  | 2025-11-19 | 2026-01-29 |  |  |  |  |  |  |  |  |  |  |
| TAPQPOSW0001 |  | Sanitary Sewerage material Approved suppliers and issue po | 62d | 2025-11-19 A | 2026-01-29 A | TAENSDSW0001, TAENSDSW0002 FS+38d, TAENPQSW0002, TAENPQSW0004 | 100% |  |  |  |  |  |  |  |  |
|  | 7 | **Material Purchase Order for Storm Networks** |  | 2025-12-03 | 2026-05-24 |  |  |  |  |  |  |  |  |  |  |
| TAPQPOST0001 |  | Storm Water material Approved suppliers and issue po | 148d | 2025-12-03 A | 2026-05-24 A | TAENSDST0001, TAENSDST0002 FS+55d, TAENPQST0002, TAENPQST0004, TAENPQST0006, TAENPQST0008, TAENPQST0010, TAENPQST0012 | 100% |  |  |  |  |  |  |  |  |
|  | 17 | **Material Fabrication and Delivery** |  | 2025-10-27 | 2027-10-04 |  |  |  |  |  |  |  |  |  |  |
|  | 1 | **Material Fabrication and Delivery for Road Works** |  | 2025-10-27 | 2027-10-04 |  |  |  |  |  |  |  |  |  |  |
| TAPQDVRD0007 |  | Backfilling Material Delivery to Site | 107d | 2025-10-27 A | 2026-02-28 A | TAENPQRD0006 | 100% |  |  |  |  |  | COST [1244053] | 1,244,052.99 | 1,244,052.99 |
| TAPQDVRD0002 |  | BBC Base Course Delivery to Site | 6d | 2026-03-29 A | 2026-04-04 A | TAPQPORD0001 | 100% |  |  |  |  |  | COST [492956] | 492,956.35 | 492,956.35 |
| TAPQDVRD0004 |  | Precast Concrete Curbstone Delivery to Site | 10d | 2026-04-07 A | 2026-04-18 A | TAPQDVRD0001 FS+30d | 100% |  |  |  |  |  | COST [63939.7] | 63,939.74 | 63,939.74 |
| TAPQDVRD0001 |  | ABC Delivery to Site | 46d | 2026-04-09 A | 2026-06-02 A | TAPQDVRD0007 FS+114d | 100% |  | 2026-04-09 | 2026-06-01 |  |  | COST [8581.85] | 8,581.85 | 8,581.85 |
| TAPQDVRD0008 |  | Marking for Road delivery to site | 2d | 2026-04-22 A | 2026-04-23 A | TAPQPORD0001, TAPQDVRD0002 | 100% |  |  |  |  |  | COST [130360] | 130,360.33 | 130,360.33 |
| TAPQDVRD0009 |  | Trafic Sinage delivery to site | 4d | 2026-04-28 A | 2026-05-02 A | TAPQDVRD0002 | 100% |  |  |  |  |  | COST [7235.06] | 7,235.06 | 7,235.06 |
| TAPQDVRD00011 |  | ABC Delivery to Site Part 01 | 71d | 2026-06-15 A | 2026-11-29 | TAPQDVRD0001 | 50% | 35.5d | 2026-06-22 | 2026-09-12 | -29.3d | 0d | COST [849603] | 849,602.65 | 424,801.33 |
| TAPQDVRD00021 |  | BBC Base Course Delivery to Site Part 01 | 74d | 2026-06-15 A | 2027-07-12 | TAPQDVRD0002, TAEXRDCC020006, TAEXRDCC030006, TAEXRDCL100006, TAEXRDCA020003, TAEXRDCC010006, TAEXRDC L020006, TAEXRDCL030006, TAEXRDCL040006, TAEXRDCL050006, TAEXRDCL010006, TAEXRDCL060006, TAEXRDCL070006, TAEXRDCL080006, TAEXRDCL090006, TAEXRDCU290003 | 31% | 51.06d | 2027-05-08 | 2027-08-01 | 1.84d | 0d | COST [3615013] | 3,615,013.25 | 1,120,654.11 |
| TAPQDVRD00041 |  | Precast Concrete Curbstone Delivery to Site part 01 | 60d | 2026-07-29 A | 2027-07-28 | TAPQDVRD00011 FS+155d, TAPQDVRD0004 | 14% | 51.6d | 2027-03-25 | 2027-06-03 | -26.1d | 0d | COST [1214855] | 1,214,855 | 170,079.7 |
| TAPQDVRD0003 |  | BWC Asphalt Wearing Course Delivery to Site | 35d | 2027-07-12 | 2027-08-22 | TAPQDVRD00021 |  |  |  |  | 2.84d | 0d | COST [2344012] | 2,344,012 |  |
| TAPQDVRD00081 |  | Marking for Road delivery to site Part 01 | 5d | 2027-07-12 | 2027-07-18 | TAPQDVRD0008, TAPQDVRD00021 |  |  |  |  | 1.84d | 0d | COST [555747] | 555,746.67 |  |
| TAPQDVRD0005 |  | Precast Concrete Interlocking Delivery to Site | 40d | 2027-08-19 | 2027-10-04 | TAPQDVRD00041 FS+19d |  |  |  |  | -26.1d | 0d | COST [1202081] | 1,202,081.1 |  |
| TAPQDVRD00091 |  | Trafic Sinage delivery to site Part 01 | 9d | 2027-08-22 | 2027-09-01 | TAPQDVRD0009, TAPQDVRD0003 |  |  |  |  | 2.84d | 28.94d | COST [354518] | 354,517.94 |  |
|  | 10 | **Material Fabrication and Delivery for Electrical Works** |  | 2026-04-29 | 2027-04-14 |  |  |  |  |  |  |  |  |  |  |
| TAPQDVEL0001 |  | Pipes ,Fittings Delivery to Site | 1d | 2026-04-29 A | 2026-04-29 A | TAEXELCC030001 SS | 100% |  |  |  |  |  | COST [296510] | 296,510.21 | 296,510.21 |
| TAPQDVEL0002 |  | cables (LV,MV )Delivery to Site) | 60d | 2026-06-09 A | 2026-12-30 | TAPQDVEL00011 FS+35d | 58% | 25.2d | 2026-09-08 | 2026-11-16 | -20.27d | 0d | COST [1002000] | 1,002,000 | 581,160 |
| TAPQDVEL0004 |  | Substations & RMU ,ets.. Delivery to Site | 90d | 2026-07-12 A | 2026-09-02 A | TAPQDVEL0003 | 100% |  | 2027-01-30 | 2027-05-15 |  |  | COST [362547] | 362,546.67 | 362,546.67 |
| TAPQDVEL00011 |  | Pipes ,Fittings Delivery to Site Part 01 | 25d | 2026-07-18 A | 2026-10-21 | TAPQDVEL0001, TAPQPOEL1 | 89% | 2.75d | 2026-07-19 | 2026-08-16 | -20.27d | 0d | COST [127076] | 127,075.8 | 113,097.46 |
| TAPQDVEL0003 |  | Poles & Luminares Delivery to Site | 60d | 2026-12-30 | 2027-03-10 | TAPQDVEL0002 |  |  |  |  | -20.27d | 0d | COST [833333] | 833,333.33 |  |
| TAPQDVEL0005 |  | Pre cast Drawpits and Pole Foundation Delivery | 40d | 2027-02-27 | 2027-04-14 | TAPQDVEL0003 FF+30d |  |  |  |  | -20.27d | 0d | COST [602667] | 602,666.67 |  |

| ID | WBS | Activity | Duration | Start | Finish | Predecessors | Complete | Remaining | Planned start | Planned finish | Total float | Free float | Resources | Cost | Actual cost |
| --- | --- | --- | --- | --- | --- | --- | --- | --- | --- | --- | --- | --- | --- | --- | --- |
|  | 11 | **Material Fabrication and Delivery for Telecommunication** |  | 2026-06-14 | 2026-10-27 |  |  |  |  |  |  |  |  |  |  |
| TAPQDVTC0001 |  | Telecommunication Material (Pipes,,ets) Delivery | 60d | 2026-06-14 A | 2026-10-27 | TAPQPOTC0001, TAPQDVEL00011 | 92% | 4.8d | 2026-08-04 | 2026-10-12 | -17.61d | 0d | COST [683753] | 683,753.33 | 629,053.07 |
|  | 12 | **Material Fabrication and Delivery for CCTV Networks** |  | 2026-09-19 | 2026-12-01 |  |  |  |  |  |  |  |  |  |  |
| TAPQDVCC0001 |  | CCTV Material Cabls,Camera,Devices,ets) Delivery | 60d | 2026-09-19 A | 2026-12-01 | TAPQPOCC0001, TAPQDVTC0001 | 50% | 30d | 2026-10-04 | 2026-12-13 | -15.55d | 0d | COST [552633] | 552,633.38 | 276,316.69 |
|  | 13 | **Material Fabrication and Delivery for Potable Networks** |  | 2026-01-18 | 2026-09-13 |  |  |  |  |  |  |  |  |  |  |
| TAPQDVPT0001 |  | PE Pipes Delivery | 60d | 2026-01-18 A | 2026-05-03 A | TAPQPOPT0001 | 100% |  | 2026-01-18 | 2026-03-28 |  |  | COST [535645] | 535,645.48 | 535,645.48 |
| TAPQDVPT0002 |  | Valves Delivery to Site | 74d | 2026-02-10 A | 2026-05-06 A | TAPQDVPT0001 | 100% |  |  |  |  |  | COST [183553] | 183,552.72 | 183,552.72 |
| TAPQDVPT0003 |  | Fire Hydrent Delivery to Site | 65d | 2026-02-20 A | 2026-05-06 A | TAPQDVPT0002 | 100% |  | 2026-02-21 | 2026-05-06 |  |  | COST [52000] | 52,000 | 52,000 |
| TAPQDVPT00031 |  | Fire Hydrent Delivery to Site Part 01 | 38d | 2026-06-09 A | 2026-09-13 A | TAPQDVPT0003, TAPQDVPT00021 | 100% |  | 2026-09-26 | 2026-11-09 |  |  | COST [148000] | 148,000 | 148,000 |
| TAPQDVPT00011 |  | PE Pipes Delivery Part 01 | 30d | 2026-06-15 A | 2026-08-30 A | TAPQDVPT0001 FS+60d | 100% |  | 2026-07-13 | 2026-08-16 |  |  | COST [514640] | 514,639.77 | 514,639.77 |
| TAPQDVPT00021 |  | Valves Delivery to Site Part 01 | 45d | 2026-07-16 A | 2026-08-30 A | TAPQDVPT0002, TAPQDVPT00011 | 100% |  | 2026-07-20 | 2026-09-10 |  |  | COST [51771.3] | 51,771.28 | 51,771.28 |
|  | 14 | **Material Fabrication and Delivery for TSE Networks** |  | 2026-01-22 | 2026-08-30 |  |  |  |  |  |  |  |  |  |  |
| TAPQDVTS0001 |  | PE Pipes Delivery to Site | 1d | 2026-01-22 A | 2026-01-22 A | TAPQPOTS0001 | 100% |  |  |  |  |  | COST [518714] | 518,714.18 | 518,714.18 |
| TAPQDVTS0002 |  | Valves Delivery to Site | 7d | 2026-02-20 A | 2026-02-28 A | TAPQDVTS0001 | 100% |  | 2026-02-21 | 2026-02-28 |  |  | COST [258398] | 258,398.4 | 258,398.4 |
| TAPQDVTS00011 |  | PE Pipes Delivery to Site Part 01 | 90d | 2026-06-15 A | 2026-08-30 A | TAPQDVPT00011 | 100% |  | 2026-08-12 | 2026-11-25 |  |  | COST [498372] | 498,372.44 | 498,372.44 |
| TAPQDVTS00021 |  | Valves Delivery to Site Part 01 | 90d | 2026-07-16 A | 2026-08-30 A | TAPQDVTS0002, TAPQDVTS00011 | 100% |  | 2026-08-05 | 2026-11-17 |  |  | COST [72881.6] | 72,881.6 | 72,881.6 |
|  | 15 | **Material Fabrication and Delivery for Sewerage Networks** |  | 2025-12-09 | 2026-12-06 |  |  |  |  |  |  |  |  |  |  |
| TAPQDVSW0001 |  | GRP Pipes Delivery to Site | 63d | 2025-12-09 A | 2026-02-19 A | TAPQPOSW0001 | 100% |  |  |  |  |  | COST [840000] | 840,000 | 840,000 |
| TAPQDVSW0002 |  | Fiberglass Manholes,ets) Delivery | 102d | 2026-01-29 A | 2026-05-27 A | TAPQDVSW0001 FS+15d | 100% |  |  |  |  |  | COST [281391] | 281,391.42 | 281,391.42 |
| TAPQDVSW00011 |  | GRP Pipes Delivery to Site Part 01 | 35d | 2026-07-16 A | 2026-10-26 | TAPQDVSW0001 | 81% | 6.65d | 2026-07-15 | 2026-08-24 | 7.39d | 0d | COST [160000] | 160,000 | 129,600 |
| TAPQDVSW00021 |  | Fiberglass Manholes,ets) Delivery Part 01 | 35d | 2026-10-26 | 2026-12-06 | TAPQDVSW0002, TAPQDVSW00011 |  |  |  |  | 7.39d | 0d | COST [2842.34] | 2,842.34 |  |
|  | 16 | **Material Fabrication and Delivery for Storm Networks** |  | 2025-10-29 | 2026-12-12 |  |  |  |  |  |  |  |  |  |  |
| TAPQDVST0008 |  | Backfilling Material for Dike Delivery to Site | 130d | 2025-10-29 A | 2026-03-29 A | TAPQDVRD0007 | 100% |  |  |  |  |  | COST [39916.8] | 39,916.8 | 39,916.8 |
| TAPQDVST0002 |  | GRP Pipes with Fittings Delivery Part 1 | 19d | 2025-12-09 A | 2025-12-30 A | TAPQDVST0001 SS+1d | 100% |  |  |  |  |  | COST [1442325] | 1,442,324.77 | 1,442,324.77 |
| TAPQDVST0003 |  | GRP Pipes with Fittings Delivery Part 2 | 39d | 2025-12-31 A | 2026-02-14 A | TAPQDVST0002 | 100% |  |  |  |  |  | COST [1333333] | 1,333,333.13 | 1,333,333.13 |
| TAPQDVST0001 |  | UPVC Pipes with Fittings Delivery | 28d | 2026-01-18 A | 2026-02-19 A | TAPQPOST0001 FF | 100% |  | 2026-01-18 | 2026-02-18 |  |  | COST [643251] | 643,250.62 | 643,250.62 |
| TAPQDVST0006 |  | Manholes,ets Delivery | 100d | 2026-02-07 A | 2026-06-02 A | TAPQDVST0002 FS+20d, TAPQDVST0005 | 100% |  |  |  |  |  | COST [482589] | 482,588.71 | 482,588.71 |
| TAPQDVST0004 |  | GRP Pipes with Fittings Delivery Part 3 | 13d | 2026-02-14 A | 2026-02-28 A | TAPQDVST0003 SS+30d | 100% |  |  |  |  |  | COST [1133333] | 1,133,333.05 | 1,133,333.05 |
| TAPQDVST0005 |  | Box Culvert Delivery | 69d | 2026-03-04 A | 2026-05-23 A | TAPQDVST0002 SS+20d | 100% |  |  |  |  |  | COST [855242] | 855,241.72 | 855,241.72 |
| TAPQDVST0007 |  | RIprab,Sand,Marl gravel Delivery for Ponds | 1d | 2026-04-22 A | 2026-04-22 A | TAPQDVST0003 FS+60d | 100% |  |  |  |  |  | COST [43763] | 43,763 | 43,763 |
| TAPQDVST0010 |  | Riprab for Dike Delivery to Site | 6d | 2026-04-22 A | 2026-04-28 A | TAEXSTCSWP0013 | 100% |  |  |  |  |  | COST [70132.7] | 70,132.73 | 70,132.73 |
| TAPQDVST00051 |  | Box Culvert Delivery part 01 | 31d | 2026-06-15 A | 2026-11-21 | TAPQDVST00041 | 30% | 21.7d | 2026-09-12 | 2026-10-17 | 2.5d | 0d | COST [64373] | 64,373.03 | 19,311.91 |
| TAPQDVST0009 |  | Catchbasin Delivery to Site | 60d | 2026-06-15 A | 2026-11-01 | TAPQDVST00011 | 81% | 11.4d | 2026-07-04 | 2026-09-10 | 43.64d | 0d | COST [195044] | 195,044.04 | 157,985.67 |
| TAPQDVST00101 |  | Riprab for Dike Delivery to Site part 01 | 60d | 2026-06-15 A | 2026-08-02 A | TAPQDVST0010 | 100% |  | 2026-06-22 | 2026-08-30 |  |  | COST [85717.8] | 85,717.78 | 85,717.78 |
| TAPQDVST00071 |  | RIprab,Sand,Marl gravel Delivery for Ponds part 01 | 90d | 2026-06-28 A | 2026-10-28 | TAPQDVST0007, TAPQDVST00101 FS+60d | 90% | 9d | 2026-09-19 | 2027-01-02 | 218.4d | 4.65d | COST [831497] | 831,497 | 748,347.3 |
| TAPQDVST00011 |  | UPVC Pipes with Fittings Delivery Part 01 | 10d | 2026-07-02 A | 2026-07-05 A | TAPQDVST0001 | 100% |  | 2026-07-06 | 2026-07-16 |  |  | COST [6497.48] | 6,497.48 | 6,497.48 |
| TAPQDVST00061 |  | Manholes,ets Delivery part 01 | 18d | 2026-07-12 A | 2026-12-12 | TAPQDVST0006, TAPQDVST00051 | 2% | 17.64d | 2026-10-15 | 2026-11-05 | 2.5d | 0d | COST [4874.63] | 4,874.63 | 97.49 |
| TAPQDVST00041 |  | GRP Pipes with Fittings Delivery Part 4 | 60d | 2026-07-16 A | 2026-10-27 | TAPQDVST0004, TAPQDVST00011 | 88% | 7.2d | 2026-07-15 | 2026-09-22 | 2.5d | 0d | COST [200000] | 199,999.95 | 175,999.96 |

| ID | WBS | Activity | Duration | Start | Finish | Predecessors | Complete | Remaining | Planned start | Planned finish | Total float | Free float | Resources | Cost | Actual cost |
| --- | --- | --- | --- | --- | --- | --- | --- | --- | --- | --- | --- | --- | --- | --- | --- |
|  | 1 | **CONSTRUCTION WORKS** |  | 2025-09-04 | 2027-10-04 |  |  |  |  |  |  |  |  |  |  |
|  | 9 | **ZONE 1** |  | 2025-10-21 | 2027-10-04 |  |  |  |  |  |  |  |  |  |  |
|  | 1 | **Collector Road 02** |  | 2025-11-18 | 2027-06-30 |  |  |  |  |  |  |  |  |  |  |
|  | 10 | **Road Works** |  | 2025-11-18 | 2027-06-30 |  |  |  |  |  |  |  |  |  |  |
| TAEXRDCC020001 |  | Road Excavation and Disposal | 38d | 2025-11-18 A | 2025-12-31 A | TAEXRDCL070001 | 100% |  |  |  |  |  | DUMP TRUCK [300 h]; EXCAVATOR [160 h]; LABOR [80 h]; DUMP TRUCK DRIVER [320 h]; EXCAVATOR OPERATOR [160 h]; COST [259502] | 259,502.02 | 259,502.02 |
| TAEXRDCC020002 |  | Backfilling Works for Road | 8d | 2025-11-20 A | 2025-11-29 A | TAEXRDCC020001 FS+16d | 100% |  |  |  |  |  | ROLEER [50 h]; DUMP TRUCK [112 h]; WATER TANKER [50 h]; EXCAVATOR [128 h]; GRADER [112 h]; LABOR [112 h]; GRADER OPERATOR [112 h]; DUMP TRUCK DRIVER [112 h]; WATER TANKER DRIVER [50 h]; EXCAVATOR OPERATOR [128 h]; ROLLER OPERATOR [50 h]; COST [214217] | 214,217.4 | 214,217.4 |
| TAEXRDCC020003 |  | Subgrade Works | 36d | 2026-01-10 A | 2026-02-19 A | TAEXRDCC020002 | 100% |  |  |  |  |  | ROLEER [56 h]; DUMP TRUCK [110 h]; WATER TANKER [56 h]; EXCAVATOR [56 h]; GRADER [56 h]; LABOR [56 h]; GRADER OPERATOR [56 h]; DUMP TRUCK DRIVER [110 h]; WATER TANKER DRIVER [56 h]; EXCAVATOR OPERATOR [56 h]; ROLLER OPERATOR [56 h]; COST [235952] | 235,951.64 | 235,951.64 |
| TAEXRDCC020004 |  | ABC aggregate Base Course Works | 16d | 2026-09-20 A | 2027-05-08 | TAEXSTCC020006 FS+20d, TAEXRDCC0200031, TAPQDVRD00011 | 35% | 10.4d | 2027-04-13 | 2027-05-02 | 1.84d | 0d | ROLEER [64 h]; DUMP TRUCK [64 h]; WATER TANKER [32 h]; EXCAVATOR [64 h]; GRADER [64 h]; LABOR [64 h]; GRADER OPERATOR [64 h]; DUMP TRUCK DRIVER [64 h]; WATER TANKER DRIVER [32 h]; EXCAVATOR OPERATOR [64 h]; ROLLER OPERATOR [64 h]; COST [211572] | 211,572 | 74,050.2 |
| TAEXRDCC020005 |  | MBC1 layer | 1d | 2026-10-04 A | 2027-05-09 | TAEXRDCC020004 | 9% | 0.91d | 2027-04-29 | 2027-05-01 | 1.84d | 0d | MC1 sprinker [8 h]; MC DRIVER [8 h]; COST [29600] | 29,600 | 2,664 |
| TAEXRDCC020006 |  | BBC Base Course | 4d | 2026-10-11 A | 2027-05-13 | TAEXRDCC020005 | 9% | 3.64d | 2027-05-06 | 2027-05-11 | 1.84d | 0d | ROLEER [48 h]; DUMP TRUCK [72 h]; MILLING MACHINE [24 h]; WHEEL ROLLER [48 h]; LABOR [100 h]; DUMP TRUCK DRIVER [72 h]; MILLING MACHINE OPERATOR [24 h]; WHEEL ROLLER OPERATOR [48 h]; ROLLER OPERATOR [48 h]; COST [308557] | 308,557 | 27,770.13 |
| TAEXRDCC0200021 |  | Backfilling Works for Road Part 01 | 8d | 2027-04-07 | 2027-04-17 | TAEXELCC020005 |  |  |  |  | 1.84d | 0d | ROLEER [50 h]; DUMP TRUCK [112 h]; WATER TANKER [50 h]; EXCAVATOR [128 h]; GRADER [112 h]; LABOR [112 h]; GRADER OPERATOR [112 h]; DUMP TRUCK DRIVER [112 h]; WATER TANKER DRIVER [50 h]; EXCAVATOR OPERATOR [128 h]; ROLLER OPERATOR [50 h]; COST [11274.6] | 11,274.6 |  |
| TAEXRDCC0200031 |  | Subgrade Works Part 01 | 8d | 2027-04-17 | 2027-04-26 | TAEXRDCC020003, TAEXRDCC0200021 |  |  |  |  | 1.84d | 0d | ROLEER [56 h]; DUMP TRUCK [110 h]; WATER TANKER [56 h]; EXCAVATOR [56 h]; GRADER [56 h]; LABOR [56 h]; GRADER OPERATOR [56 h]; DUMP TRUCK DRIVER [110 h]; WATER TANKER DRIVER [56 h]; EXCAVATOR OPERATOR [56 h]; ROLLER OPERATOR [56 h]; COST [41638.5] | 41,638.52 |  |
| TAEXRDCC020008 |  | Precast Concret Kerps | 11d | 2027-05-13 | 2027-05-26 | TAEXRDCC020006, TAEXRDCL050008 |  |  |  |  | 13.9d | 0d | LABOR [640 h]; COST [394355] | 394,355 |  |
| TAEXRDCC020007 |  | BWC Asphalt Wearing Course with RC | 2d | 2027-05-26 | 2027-05-29 | TAEXRDCC020006, TAEXRDCC020008 |  |  |  |  | 17.9d | 0d | ROLEER [16 h]; DUMP TRUCK [32 h]; MILLING MACHINE [8 h]; WHEEL ROLLER [16 h]; LABOR [40 h]; DUMP TRUCK DRIVER [32 h]; MILLING MACHINE OPERATOR [8 h]; WHEEL ROLLER OPERATOR [16 h]; ROLLER OPERATOR [16 h]; COST [211511] | 211,511 |  |
| TAEXRDCC020009 |  | Precast Interlock Works | 18d | 2027-05-29 | 2027-06-19 | TAEXRDCC020008, TAEXRDCC020007 |  |  |  |  | 17.9d | 0d | LABOR [280 h]; COST [402199] | 402,199 |  |
| TAEXRDCC020010 |  | Stone Paving works | 7d | 2027-06-19 | 2027-06-27 | TAEXRDCC020009 |  |  |  |  | 17.9d | 0d | DUMP TRUCK [32 h]; LABOR [160 h]; DUMP TRUCK DRIVER [32 h]; COST [47000] | 47,000 |  |
| TAEXRDCC020011 |  | Road Marking | 2d | 2027-06-27 | 2027-06-29 | TAEXRDCC020010 |  |  |  |  | 17.9d | 0d | LABOR [32 h]; COST [7850] | 7,850 |  |
| TAEXRDCC020012 |  | Traffic Sinage | 1d | 2027-06-29 | 2027-06-30 | TAEXRDCC020011 |  |  |  |  | 17.9d | 0d | EXCAVATOR [8 h]; LABOR [32 h]; EXCAVATOR OPERATOR [8 h]; COST [52500] | 52,500 |  |
|  | 11 | **Electrical Works** |  | 2026-09-06 | 2027-05-05 |  |  |  |  |  |  |  |  |  |  |
| TAEXELCC020003 |  | Road Crossing Ducts | 4d | 2026-09-06 A | 2027-03-08 | TAEXELCC020002 | 60% | 1.6d | 2027-03-07 | 2027-03-11 | 1.84d | 0d | DUMP TRUCK [40 h]; EXCAVATOR [40 h]; DUMP TRUCK DRIVER [40 h]; EXCAVATOR OPERATOR [40 h]; COST [11188] | 11,188 | 6,712.8 |
| TAEXELCC020002 |  | Drawpit and PVC Pipes Installation | 14d | 2026-09-20 A | 2027-03-06 | TAEXELCC020001, TAPQDVEL0005 SS, TAPQDVEL00011 | 60% | 5.6d | 2027-02-06 | 2027-02-22 | 1.84d | 0d | ELECTRACIAN [80 h]; EXCAVATOR [40 h]; LABOR [80 h]; EXCAVATOR OPERATOR [40 h]; COST [32120] | 32,120 | 19,272 |
| TAEXELCC020001 |  | Trench Cut off | 20d | 2026-12-10 | 2027-01-03 | TAEXELCC0300011 |  |  |  |  | 49.29d | 47.45d | DUMP TRUCK [80 h]; EXCAVATOR [40 h]; LABOR [40 h]; DUMP TRUCK DRIVER [80 h]; EXCAVATOR OPERATOR [40 h]; COST [78072.6] | 78,072.55 |  |
| TAEXELCC020004 |  | Trench Backfilling | 18d | 2027-03-08 | 2027-03-29 | TAEXELCC020003 |  |  |  |  | 1.84d | 0d | DUMP TRUCK [160 h]; WATER TANKER [40 h]; EXCAVATOR [60 h]; LABOR [60 h]; DUMP TRUCK DRIVER [160 h]; WATER TANKER DRIVER [40 h]; EXCAVATOR OPERATOR [60 h]; COMPACTOR [75 h]; COST [18320] | 18,320 |  |
| TAEXELCC020005 |  | Cables Pulling | 8d | 2027-03-29 | 2027-04-07 | TAEXELCC020002, TAEXELCC020003, TAEXELCC020004 |  |  |  |  | 1.84d | 0d | ELECTRACIAN [120 h]; LABOR [160 h]; COST [248000] | 248,000 |  |
| TAEXELCC020006 |  | Poles RC Foundation | 6d | 2027-04-14 | 2027-04-21 | TAEXELCC020002, TAPQDVEL0005 |  |  |  |  | 44.05d | 0d | EXCAVATOR [40 h]; LABOR [40 h]; EXCAVATOR OPERATOR [40 h]; COST [15000] | 15,000 |  |
| TAEXELCC020007 |  | Earthing cables | 10d | 2027-04-21 | 2027-05-03 | TAEXELCC020006 |  |  |  |  | 44.05d | 30.15d | ELECTRACIAN [80 h]; LABOR [40 h]; COST [5210] | 5,210 |  |
| TAEXELCC020008 |  | Lighting Pole Installation with Luminares | 12d | 2027-04-21 | 2027-05-05 | TAEXELCC020006, TAEXELCC020005 |  |  |  |  | 51.05d | 6.15d | ELECTRACIAN [40 h]; CRANE [40 h]; CRANE OPERATOR [40 h]; COST [82000] | 82,000 |  |

| ID | WBS | Activity | Duration | Start | Finish | Predecessors | Complete | Remaining | Planned start | Planned finish | Total float | Free float | Resources | Cost | Actual cost |
| --- | --- | --- | --- | --- | --- | --- | --- | --- | --- | --- | --- | --- | --- | --- | --- |
|  | 12 | **Telecommunication Works** |  | 2026-09-20 | 2027-05-12 |  |  |  |  |  |  |  |  |  |  |
| TAEXTCCC020002 |  | Drawpit and PVC Pipes Installation | 8d | 2026-09-20 A | 2027-04-19 | TAEXTCCC020001, TAPQDVEL00011, TAPQDVEL0005 | 50% | 4d | 2027-03-24 | 2027-04-03 | -20.27d | 0d | ELECTRACIAN [160 h]; EXCAVATOR [80 h]; LABOR [160 h]; EXCAVATOR OPERATOR [80 h]; COST [79800] | 79,800 | 39,900 |
| TAEXTCCC020003 |  | Road Crossing Ducts | 4d | 2026-09-20 A | 2027-04-21 | TAEXTCCC020002 | 50% | 2d | 2027-04-03 | 2027-04-07 | 75.05d | 0d | DUMP TRUCK [40 h]; EXCAVATOR [40 h]; DUMP TRUCK DRIVER [40 h]; EXCAVATOR OPERATOR [40 h]; COST [12625.2] | 12,625.23 | 6,312.61 |
| TAEXTCCC020001 |  | Trench Cut off | 20d | 2026-10-21 | 2026-11-14 | TAPQDVTC0001 SS+20d |  |  |  |  | -17.61d | 0d | DUMP TRUCK [160 h]; EXCAVATOR [160 h]; LABOR [80 h]; DUMP TRUCK DRIVER [160 h]; EXCAVATOR OPERATOR [160 h]; COST [26015] | 26,015 |  |
| TAEXTCCC020004 |  | Trench Backfilling | 18d | 2027-04-21 | 2027-05-12 | TAEXTCCC020003 |  |  |  |  | 75.05d | 23d | DUMP TRUCK [160 h]; WATER TANKER [144 h]; EXCAVATOR [150 h]; LABOR [160 h]; DUMP TRUCK DRIVER [160 h]; WATER TANKER DRIVER [144 h]; EXCAVATOR OPERATOR [150 h]; COMPACTOR [144 h]; COST [52948] | 52,948 |  |
|  | 13 | **CCTV Works** |  | 2027-02-25 | 2027-05-06 |  |  |  |  |  |  |  |  |  |  |
| TAEXCCCC020001 |  | Pipe Installation with manhole | 10d | 2027-02-25 | 2027-03-09 | TAEXCCCL050001 |  |  |  |  | -15.55d | 0d | ELECTRACIAN [96 h]; LABOR [192 h]; COST [23396] | 23,396 |  |
| TAEXCCCC020002 |  | CCTV Swiches Lighting panels Installation | 18d | 2027-03-09 | 2027-03-30 | TAEXCCCC020001 |  |  |  |  | -15.55d | 0d | ELECTRACIAN [330 h]; EXCAVATOR [40 h]; LABOR [330 h]; EXCAVATOR OPERATOR [40 h]; COST [3899] | 3,899 |  |
| TAEXCCCC020003 |  | Cable laying and connected with Panels | 14d | 2027-03-30 | 2027-04-15 | TAEXCCCC020002 |  |  |  |  | 83.45d | 0d | ELECTRACIAN [160 h]; LABOR [320 h]; COST [25974] | 25,974 |  |
| TAEXCCCC020004 |  | Pole Installation with IP Outdoor CCTV POE Camera | 18d | 2027-04-15 | 2027-05-06 | TAEXCCCC020003 |  |  |  |  | 83.45d | 33d | ELECTRACIAN [280 h]; EXCAVATOR [140 h]; LABOR [280 h]; EXCAVATOR OPERATOR [140 h]; COST [5817] | 5,817 |  |
|  | 14 | **Potable Networks** |  | 2026-06-30 | 2026-10-17 |  |  |  |  |  |  |  |  |  |  |
| TAEXPTCC020001 |  | Excavation works for Trench | 20d | 2026-06-30 A | 2026-07-19 A | TAEXPTCL100001, TAEXTSCL100004 | 100% |  | 2026-11-10 | 2026-12-03 |  |  | DUMP TRUCK [320 h]; EXCAVATOR [160 h]; LABOR [80 h]; DUMP TRUCK DRIVER [320 h]; EXCAVATOR OPERATOR [160 h]; COST [54010] | 54,010 | 54,010 |
| TAEXPTCC020002 |  | Bedding Works | 2d | 2026-07-11 A | 2026-08-11 A | TAEXPTCC020001 | 100% |  | 2026-12-08 | 2026-12-10 |  |  | DUMP TRUCK [16 h]; EXCAVATOR [16 h]; LABOR [32 h]; DUMP TRUCK DRIVER [16 h]; EXCAVATOR OPERATOR [16 h]; COST [9250] | 9,250 | 9,250 |
| TAEXPTCC020003 |  | Install Pipes & Fittings | 16d | 2026-07-12 A | 2026-08-10 A | TAEXPTCC020002 | 100% |  | 2026-12-10 | 2026-12-29 |  |  | LABOR [240 h]; PLUMBER [128 h]; COST [116240] | 116,240 | 116,240 |
| TAEXPTCC020005 |  | Install Valves with fittings | 8d | 2026-07-28 A | 2026-10-17 A | TAEXPTCC020004 FF, TAPQDVPT00021, TAEXPTCL100005 | 100% |  | 2027-03-08 | 2027-03-17 |  |  | LABOR [128 h]; PLUMBER [128 h]; COST [13600] | 13,600 | 13,600 |
| TAEXPTCC020004 |  | Backfilling Works for Trench | 18d | 2026-08-11 A | 2026-08-30 A | TAEXPTCC020003 | 100% |  | 2026-12-06 | 2026-12-27 |  |  | DUMP TRUCK [140 h]; WATER TANKER [32 h]; EXCAVATOR [70 h]; LABOR [60 h]; DUMP TRUCK DRIVER [140 h]; WATER TANKER DRIVER [32 h]; EXCAVATOR OPERATOR [70 h]; COMPACTOR [32 h]; COST [48085.9] | 48,085.92 | 48,085.92 |
| TAEXPTCC020007 |  | Valve Chamber works | 11d | 2026-08-29 A | 2026-10-10 A | TAEXPTCC020006 | 100% |  | 2027-03-15 | 2027-03-28 |  |  | WATER TANKER [20 h]; EXCAVATOR [40 h]; CONCRET MIXER [80 h]; LABOR [80 h]; WATER TANKER DRIVER [20 h]; EXCAVATOR OPERATOR [40 h]; PLUMBER [80 h]; STEEL FIXER [80 h]; CARPENTER [80 h]; MASON [80 h]; CONCRET MIXER OPERATOR [80 h]; COST [20600] | 20,600 | 20,600 |
| TAEXPTCC020006 |  | Install fire hydrent | 8d | 2026-09-02 A | 2026-10-17 A | TAEXPTCC020003, TAEXPTCC020005, TAEXPTCL100006 | 100% |  | 2027-02-10 | 2027-02-20 |  |  | LABOR [128 h]; PLUMBER [64 h]; COST [26200] | 26,200 | 26,200 |
| TAEXPTCC020008 |  | Inspection Test | 6d | 2026-10-03 A | 2026-10-04 A | TAEXPTCC020007 | 100% |  | 2027-02-24 | 2027-03-03 |  |  | WATER TANKER [48 h]; LABOR [64 h]; WATER TANKER DRIVER [48 h]; PLUMBER [48 h]; COST [19059.6] | 19,059.62 | 19,059.62 |
|  | 15 | **TSE Networks** |  | 2026-04-19 | 2026-10-17 |  |  |  |  |  |  |  |  |  |  |
| TAEXTSCC020001 |  | Excavation works for Trench | 39d | 2026-04-19 A | 2026-06-02 A | TAEXTSCL090001 | 100% |  |  |  |  |  | DUMP TRUCK [320 h]; EXCAVATOR [160 h]; LABOR [40 h]; DUMP TRUCK DRIVER [320 h]; EXCAVATOR OPERATOR [160 h]; COST [29753.3] | 29,753.34 | 29,753.34 |
| TAEXTSCC020002 |  | Bedding Works | 2d | 2026-05-07 A | 2026-05-09 A | TAEXTSCC020001 | 100% |  |  |  |  |  | DUMP TRUCK [16 h]; EXCAVATOR [16 h]; LABOR [32 h]; DUMP TRUCK DRIVER [16 h]; EXCAVATOR OPERATOR [16 h]; COST [9375] | 9,375 | 9,375 |
| TAEXTSCC020003 |  | Install Pipes & Fittings | 4d | 2026-05-07 A | 2026-05-11 A | TAEXTSCC020002 | 100% |  |  |  |  |  | LABOR [256 h]; PLUMBER [256 h]; COST [30426] | 30,426 | 30,426 |
| TAEXTSCC0200031 |  | Install Pipes & Fittings Part 01 | 8d | 2026-06-16 A | 2026-06-24 A | TAEXTSCC020003, TAEXTSCC0200021 | 100% |  | 2027-01-18 | 2027-01-27 |  |  | LABOR [256 h]; PLUMBER [256 h]; COST [24894] | 24,894 | 24,894 |
| TAEXTSCC0200021 |  | Bedding Works Part 01 | 2d | 2026-06-16 A | 2026-06-24 A | TAEXSTCL090007 | 100% |  | 2027-01-16 | 2027-01-18 |  |  | DUMP TRUCK [16 h]; EXCAVATOR [16 h]; LABOR [32 h]; DUMP TRUCK DRIVER [16 h]; EXCAVATOR OPERATOR [16 h]; COST [3125] | 3,125 | 3,125 |
| TAEXTSCC020004 |  | Backfilling Works for Trench | 18d | 2026-06-18 A | 2026-08-09 A | TAEXTSCC0200031 | 100% |  | 2027-01-23 | 2027-02-13 |  |  | DUMP TRUCK [280 h]; WATER TANKER [144 h]; EXCAVATOR [144 h]; LABOR [140 h]; DUMP TRUCK DRIVER [280 h]; WATER TANKER DRIVER [144 h]; EXCAVATOR OPERATOR [144 h]; COMPACTOR [128 h]; COST [31500] | 31,500 | 31,500 |
| TAEXTSCC020006 |  | Valve Chamber works | 20d | 2026-08-13 A | 2026-10-10 A | TAEXTSCC020005 | 100% |  | 2026-11-16 | 2026-12-09 |  |  | WATER TANKER [20 h]; EXCAVATOR [40 h]; CONCRET MIXER [20 h]; LABOR [80 h]; WATER TANKER DRIVER [20 h]; EXCAVATOR OPERATOR [40 h]; PLUMBER [80 h]; STEEL FIXER [80 h]; CARPENTER [80 h]; MASON [80 h]; CONCRET MIXER OPERATOR [20 h]; COST [48600] | 48,600 | 48,600 |
| TAEXTSCC020005 |  | Install Valves with fittings | 8d | 2026-08-29 A | 2026-10-17 A | TAEXTSCC020004 FF | 100% |  | 2026-11-16 | 2026-11-25 |  |  | LABOR [128 h]; PLUMBER [128 h]; COST [12800] | 12,800 | 12,800 |
| TAEXTSCC020007 |  | Inspection Test | 6d | 2026-09-06 A | 2026-10-04 A | TAEXTSCC020006, TAEXPTCC020008 | 100% |  | 2027-03-16 | 2027-03-23 |  |  | WATER TANKER [48 h]; LABOR [64 h]; WATER TANKER DRIVER [48 h]; PLUMBER [64 h]; COST [8400] | 8,400 | 8,400 |

| ID | WBS | Activity | Duration | Start | Finish | Predecessors | Complete | Remaining | Planned start | Planned finish | Total float | Free float | Resources | Cost | Actual cost |
| --- | --- | --- | --- | --- | --- | --- | --- | --- | --- | --- | --- | --- | --- | --- | --- |
|  | 16 | **Sewerage Networks** |  | 2025-11-22 | 2027-02-06 |  |  |  |  |  |  |  |  |  |  |
| TAEXSWCC020001 |  | Excavation works for Trench | 8d | 2025-11-22 A | 2025-11-30 A | TAPQDVSW0001, TAGNML0011 SS | 100% |  |  |  |  |  | DUMP TRUCK [240 h]; EXCAVATOR [120 h]; LABOR [60 h]; DUMP TRUCK DRIVER [240 h]; EXCAVATOR OPERATOR [120 h]; COST [52558.8] | 52,558.84 | 52,558.84 |
| TAEXSWCC020002 |  | Bedding Works | 4d | 2025-12-15 A | 2025-12-18 A | TAEXSWCC020001 | 100% |  |  |  |  |  | DUMP TRUCK [32 h]; EXCAVATOR [32 h]; LABOR [128 h]; DUMP TRUCK DRIVER [32 h]; EXCAVATOR OPERATOR [32 h]; COST [24348.5] | 24,348.5 | 24,348.5 |
| TAEXSWCC020003 |  | Install GRP Pipes & Fittings | 12d | 2025-12-20 A | 2026-01-01 A | TAEXSWCC020002 | 100% |  |  |  |  |  | EXCAVATOR [96 h]; LABOR [384 h]; EXCAVATOR OPERATOR [96 h]; PLUMBER [192 h]; COST [71820] | 71,820 | 71,820 |
| TAEXSWCC020004 |  | Backfilling Works for Trench | 18d | 2025-12-30 A | 2026-01-19 A | TAEXSWCC020003 | 100% |  |  |  |  |  | DUMP TRUCK [240 h]; WATER TANKER [120 h]; EXCAVATOR [120 h]; LABOR [120 h]; DUMP TRUCK DRIVER [240 h]; WATER TANKER DRIVER [120 h]; EXCAVATOR OPERATOR [120 h]; COMPACTOR [128 h]; COST [58839.3] | 58,839.34 | 58,839.34 |
| TAEXSWCC020005 |  | Manhole Installation with backfilling | 16d | 2026-03-30 A | 2026-04-16 A | TAPQDVSW0002 | 100% |  |  |  |  |  | DUMP TRUCK [128 h]; EXCAVATOR [56 h]; LABOR [128 h]; DUMP TRUCK DRIVER [128 h]; EXCAVATOR OPERATOR [56 h]; PLUMBER [56 h]; MASON [32 h]; COST [60555.6] | 60,555.56 | 60,555.56 |
| TAEXSWCC020006 |  | Leakage Test | 5d | 2026-04-18 A | 2026-04-22 A | TAEXSWCC020005 | 100% |  |  |  |  |  | WATER TANKER [40 h]; LABOR [80 h]; WATER TANKER DRIVER [40 h]; PLUMBER [40 h]; COST [21375] | 21,375 | 21,375 |
| TAEXSWCC0200051 |  | Manhole Installation with backfilling Part 01 | 5d | 2026-06-18 A | 2026-10-10 A | TAEXSWCC0200041 FF+15d, TAEXSWCC020005 | 100% |  | 2027-03-31 | 2027-04-06 |  |  | DUMP TRUCK [128 h]; EXCAVATOR [56 h]; LABOR [128 h]; DUMP TRUCK DRIVER [128 h]; EXCAVATOR OPERATOR [56 h]; PLUMBER [56 h]; MASON [32 h]; COST [15138.9] | 15,138.89 | 15,138.89 |
| TAEXSWCC0200011 |  | Excavation works for Trench Part 01 | 5d | 2026-08-19 A | 2026-08-20 A | TAPQDVSW00011, TAPQDVTS00011, TAPQDVST00041 | 100% |  | 2026-08-27 | 2026-09-02 |  |  | DUMP TRUCK [240 h]; EXCAVATOR [120 h]; LABOR [60 h]; DUMP TRUCK DRIVER [240 h]; EXCAVATOR OPERATOR [120 h]; COST [2766.25] | 2,766.25 | 2,766.25 |
| TAEXSWCC0200021 |  | Bedding Works Part 01 | 2d | 2026-08-27 A | 2026-08-29 A | TAEXSWCC020002, TAEXSWCC0200011 | 100% |  | 2026-09-08 | 2026-09-10 |  |  | DUMP TRUCK [32 h]; EXCAVATOR [32 h]; LABOR [128 h]; DUMP TRUCK DRIVER [32 h]; EXCAVATOR OPERATOR [32 h]; COST [1281.5] | 1,281.5 | 1,281.5 |
| TAEXSWCC0200031 |  | Install GRP Pipes & Fittings Part 01 | 4d | 2026-09-05 A | 2026-09-10 A | TAEXSWCC020003, TAEXSWCC0200021, TAEXSTCC020006 | 100% |  | 2027-01-07 | 2027-01-12 |  |  | EXCAVATOR [96 h]; LABOR [384 h]; EXCAVATOR OPERATOR [96 h]; PLUMBER [192 h]; COST [3780] | 3,780 | 3,780 |
| TAEXSWCC0200061 |  | Leakage Test Part 01 | 3d | 2026-10-01 A | 2027-02-06 | TAEXSWCC020006, TAEXSWCC0200051 | 95% | 0.15d | 2027-02-11 | 2027-02-15 | 143.41d | 0d | WATER TANKER [40 h]; LABOR [80 h]; WATER TANKER DRIVER [40 h]; PLUMBER [40 h]; COST [1125] | 1,125 | 1,068.75 |
| TAEXSWCC0200041 |  | Backfilling Works for Trench Part 01 | 6d | 2026-10-07 A | 2026-10-10 A | TAEXSWCC0200031 FF+15d, TAEXSWCC020004 | 100% |  | 2027-01-26 | 2027-02-02 |  |  | DUMP TRUCK [240 h]; WATER TANKER [120 h]; EXCAVATOR [120 h]; LABOR [120 h]; DUMP TRUCK DRIVER [240 h]; WATER TANKER DRIVER [120 h]; EXCAVATOR OPERATOR [120 h]; COMPACTOR [128 h]; COST [3096.81] | 3,096.81 | 3,096.81 |
|  | 17 | **Storm Networks** |  | 2025-11-29 | 2027-02-06 |  |  |  |  |  |  |  |  |  |  |
| TAEXSTCC020001 |  | Excavation works for Trench | 15d | 2025-11-29 A | 2025-12-15 A | TAPQDVST0002 SS | 100% |  |  |  |  |  | DUMP TRUCK [240 h]; EXCAVATOR [120 h]; LABOR [60 h]; DUMP TRUCK DRIVER [240 h]; EXCAVATOR OPERATOR [120 h]; COST [251256] | 251,256 | 251,256 |
| TAEXSTCC020002 |  | Bedding Works | 4d | 2025-12-16 A | 2025-12-20 A | TAEXSTCC020001 | 100% |  |  |  |  |  | DUMP TRUCK [16 h]; EXCAVATOR [16 h]; LABOR [64 h]; DUMP TRUCK DRIVER [16 h]; EXCAVATOR OPERATOR [16 h]; COST [131574] | 131,574.49 | 131,574.49 |
| TAEXSTCC020003 |  | Install GRP Pipes & Fittings | 12d | 2025-12-21 A | 2026-01-03 A | TAEXSTCC020002 | 100% |  |  |  |  |  | EXCAVATOR [96 h]; LABOR [372 h]; EXCAVATOR OPERATOR [96 h]; PLUMBER [372 h]; COST [273250] | 273,250 | 273,250 |
| TAEXSTCC020004 |  | Backfilling Works for Trench | 18d | 2025-12-31 A | 2026-01-20 A | TAEXSTCC020003 FS+15d | 100% |  |  |  |  |  | DUMP TRUCK [288 h]; WATER TANKER [144 h]; EXCAVATOR [144 h]; LABOR [288 h]; DUMP TRUCK DRIVER [288 h]; WATER TANKER DRIVER [144 h]; EXCAVATOR OPERATOR [144 h]; COMPACTOR [144 h]; COST [101032] | 101,032.5 | 101,032.5 |
| TAEXSTCC020005 |  | Manhole Installation with backfilling | 16d | 2026-03-02 A | 2026-03-19 A | TAEXSTCC020003 | 100% |  |  |  |  |  | DUMP TRUCK [90 h]; EXCAVATOR [60 h]; LABOR [60 h]; DUMP TRUCK DRIVER [90 h]; EXCAVATOR OPERATOR [60 h]; PLUMBER [128 h]; MASON [128 h]; COST [149286] | 149,285.5 | 149,285.5 |
| TAEXSTCC020007 |  | Leakage Test | 5d | 2026-04-18 A | 2026-04-22 A | TAEXSTCC020005 | 100% |  |  |  |  |  | WATER TANKER [40 h]; LABOR [40 h]; WATER TANKER DRIVER [40 h]; PLUMBER [40 h]; COST [3906] | 3,906 | 3,906 |
| TAEXSTCC0200071 |  | Leakage Test Part 01 | 3d | 2026-06-17 A | 2026-10-04 A | TAEXSTCC020007, TAEXSTCC020006, TAEXSWCC0200061 | 100% |  | 2027-04-10 | 2027-04-13 |  |  | WATER TANKER [40 h]; LABOR [40 h]; WATER TANKER DRIVER [40 h]; PLUMBER [40 h]; COST [14694] | 14,694 | 14,694 |
| TAEXSTCC0200051 |  | Manhole Installation with backfilling Part 01 | 6d | 2026-06-18 A | 2026-10-10 A | TAEXSTCC0200041 FF+10d, TAEXSTCC020005, TAPQDVST00061 | 100% |  | 2026-12-02 | 2026-12-09 |  |  | DUMP TRUCK [90 h]; EXCAVATOR [60 h]; LABOR [60 h]; DUMP TRUCK DRIVER [90 h]; EXCAVATOR OPERATOR [60 h]; PLUMBER [128 h]; MASON [128 h]; COST [26344.5] | 26,344.5 | 26,344.5 |
| TAEXSTCC020006 |  | Install Catch Basin with UPVC Pipes & Fittings | 15d | 2026-08-08 A | 2027-02-06 | TAEXSTCC0200051, TAEXSTCL100006 | 95% | 0.75d | 2026-12-29 | 2027-01-16 | 27.4d | 0d | EXCAVATOR [60 h]; LABOR [120 h]; EXCAVATOR OPERATOR [60 h]; PLUMBER [120 h]; COST [126530] | 126,530 | 120,203.5 |
| TAEXSTCC0200041 |  | Backfilling Works for Trench Part 01 | 5d | 2026-09-13 A | 2026-09-19 A | TAEXSTCC020004, TAEXSWCC0200021 | 100% |  | 2026-09-22 | 2026-09-28 |  |  | DUMP TRUCK [288 h]; WATER TANKER [144 h]; EXCAVATOR [144 h]; LABOR [288 h]; DUMP TRUCK DRIVER [288 h]; WATER TANKER DRIVER [144 h]; EXCAVATOR OPERATOR [144 h]; COMPACTOR [144 h]; COST [5317.5] | 5,317.5 | 5,317.5 |

| ID | WBS | Activity | Duration | Start | Finish | Predecessors | Complete | Planned start | Planned finish | Total float | Free float | Resources | Cost | Actual cost |
| --- | --- | --- | --- | --- | --- | --- | --- | --- | --- | --- | --- | --- | --- | --- |
|  | 2 | **Collector Road 03** |  | 2026-01-18 | 2027-06-17 |  |  |  |  |  |  |  |  |  |
|  | 10 | **Road Works** |  | 2026-01-18 | 2027-06-10 |  |  |  |  |  |  |  |  |  |
| TAEXRDCC030003 |  | Subgrade Works | 14d | 2026-01-18 A | 2026-02-02 A | TAEXRDCC030002 FS+25d, TAGNZM0001 SS | 100% |  |  |  |  | ROLEER [56 h]; DUMP TRUCK [56 h]; WATER TANKER [28 h]; EXCAVATOR [56 h]; GRADER [56 h]; LABOR [56 h]; GRADER OPERATOR [56 h]; DUMP TRUCK DRIVER [56 h]; WATER TANKER DRIVER [28 h]; EXCAVATOR OPERATOR [56 h]; ROLLER OPERATOR [56 h]; COST [295648] | 295,648.2 | 295,648.2 |
| TAEXRDCC030001 |  | Road Excavation and Disposal | 14d | 2026-03-24 A | 2026-04-08 A | TAEXRDCC020001, TAGNML0004 SS, TAENSDRD0001 | 100% |  |  |  |  | DUMP TRUCK [320 h]; EXCAVATOR [160 h]; LABOR [80 h]; DUMP TRUCK DRIVER [320 h]; EXCAVATOR OPERATOR [160 h]; COST [281473] | 281,473 | 281,473 |
| TAEXRDCC030002 |  | Backfilling Works for Road | 18d | 2026-04-09 A | 2026-04-29 A | TAEXRDCC030001 | 100% |  |  |  |  | ROLEER [56 h]; DUMP TRUCK [448 h]; WATER TANKER [56 h]; EXCAVATOR [224 h]; GRADER [112 h]; LABOR [56 h]; GRADER OPERATOR [112 h]; DUMP TRUCK DRIVER [448 h]; WATER TANKER DRIVER [56 h]; EXCAVATOR OPERATOR [224 h]; ROLLER OPERATOR [56 h]; COST [340932] | 340,932 | 340,932 |
| TAEXRDCC030004 |  | ABC aggregate Base Course Works | 1d | 2026-05-21 A | 2026-05-21 A | TAEXRDCC030003, TAEXSTCC030006 | 100% |  |  |  |  | ROLEER [64 h]; DUMP TRUCK [180 h]; WATER TANKER [64 h]; EXCAVATOR [64 h]; GRADER [64 h]; LABOR [64 h]; GRADER OPERATOR [64 h]; DUMP TRUCK DRIVER [180 h]; WATER TANKER DRIVER [64 h]; EXCAVATOR OPERATOR [64 h]; ROLLER OPERATOR [64 h]; COST [22236.6] | 22,236.6 | 22,236.6 |
| TAEXRDCC0300041 |  | ABC aggregate Base Course Works Part 01 | 5d | 2026-06-08 A | 2026-06-11 A | TAEXRDCC030004, TAPQDVRD00011 | 100% | 2026-09-01 | 2026-09-07 |  |  | ROLEER [64 h]; DUMP TRUCK [180 h]; WATER TANKER [64 h]; EXCAVATOR [64 h]; GRADER [64 h]; LABOR [64 h]; GRADER OPERATOR [64 h]; DUMP TRUCK DRIVER [180 h]; WATER TANKER DRIVER [64 h]; EXCAVATOR OPERATOR [64 h]; ROLLER OPERATOR [64 h]; COST [200129] | 200,129.4 | 200,129.4 |
| TAEXRDCC030005 |  | MBC1 layer | 1d | 2026-06-10 A | 2026-06-13 A | TAEXRDCC0300041 | 100% | 2026-09-07 | 2026-09-08 |  |  | MC1 sprinker [8 h]; MC DRIVER [8 h]; COST [4500] | 4,500 | 4,500 |
| TAEXRDCC030006 |  | BBC Base Course | 4d | 2026-06-14 A | 2026-06-15 A | TAEXRDCC030005 | 100% | 2026-09-08 | 2026-09-13 |  |  | ROLEER [48 h]; DUMP TRUCK [140 h]; MILLING MACHINE [24 h]; WHEEL ROLLER [48 h]; LABOR [100 h]; DUMP TRUCK DRIVER [140 h]; MILLING MACHINE OPERATOR [24 h]; WHEEL ROLLER OPERATOR [48 h]; ROLLER OPERATOR [48 h]; COST [354278] | 354,278 | 354,278 |
| TAEXRDCC030008 |  | Precast Concret Kerps | 7d | 2026-08-02 A | 2026-08-16 A | TAEXRDCC030006, TAEXRDCC020008 | 100% | 2027-05-03 | 2027-05-11 |  |  | LABOR [260 h]; COST [371311] | 371,311 | 371,311 |
| TAEXRDCC030007 |  | BWC Asphalt Wearing Course with RC | 2d | 2027-05-26 | 2027-05-29 | TAEXRDCC030006, TAEXRDCC030008 |  |  |  | 26.9d | 0d | ROLEER [16 h]; DUMP TRUCK [32 h]; MILLING MACHINE [8 h]; WHEEL ROLLER [16 h]; LABOR [40 h]; DUMP TRUCK DRIVER [32 h]; MILLING MACHINE OPERATOR [8 h]; WHEEL ROLLER OPERATOR [16 h]; ROLLER OPERATOR [16 h]; COST [251511] | 251,511 |  |
| TAEXRDCC030009 |  | Precast Interlock Works | 6d | 2027-05-29 | 2027-06-05 | TAEXRDCC030008, TAEXRDCC030007 |  |  |  | 34.9d | 0d | LABOR [230 h]; COST [349143] | 349,143 |  |
| TAEXRDCC030010 |  | Stone Paving works | 2d | 2027-06-05 | 2027-06-07 | TAEXRDCC030009 |  |  |  | 34.9d | 0d | DUMP TRUCK [32 h]; LABOR [160 h]; DUMP TRUCK DRIVER [32 h]; COST [21000] | 21,000 |  |
| TAEXRDCC030011 |  | Road Marking | 1d | 2027-06-07 | 2027-06-08 | TAEXRDCC030010 |  |  |  | 34.9d | 0d | LABOR [32 h]; COST [4100] | 4,100 |  |
| TAEXRDCC030012 |  | Traffic Sinage | 2d | 2027-06-08 | 2027-06-10 | TAEXRDCC030011 |  |  |  | 34.9d | 17d | EXCAVATOR [8 h]; LABOR [32 h]; EXCAVATOR OPERATOR [8 h]; COST [33450] | 33,450 |  |
|  | 1 | **Electrical Works** |  | 2026-05-10 | 2027-06-17 |  |  |  |  |  |  |  |  |  |
| TAEXELCC030001 |  | Trench Cut off | 1d | 2026-05-10 A | 2026-05-10 A | TAENSDEL0002, TAGNML0005 SS | 100% |  |  |  |  | DUMP TRUCK [160 h]; EXCAVATOR [120 h]; LABOR [60 h]; DUMP TRUCK DRIVER [160 h]; EXCAVATOR OPERATOR [120 h]; COST [37203.1] | 37,203.13 | 37,203.13 |
| TAEXELCC030002 |  | Drawpit and PVC Pipes Installation | 2d | 2026-05-11 A | 2026-05-12 A | TAEXELCC030001 | 100% |  |  |  |  | ELECTRACIAN [80 h]; EXCAVATOR [40 h]; LABOR [80 h]; EXCAVATOR OPERATOR [40 h]; COST [7000] | 7,000 | 7,000 |
| TAEXELCC030003 |  | Road Crossing Ducts | 2d | 2026-05-11 A | 2026-05-12 A | TAEXELCC030002 | 100% |  |  |  |  | DUMP TRUCK [40 h]; EXCAVATOR [40 h]; DUMP TRUCK DRIVER [40 h]; EXCAVATOR OPERATOR [40 h]; COST [2600] | 2,600 | 2,600 |
| TAEXELCC030004 |  | Trench Backfilling | 1d | 2026-05-12 A | 2026-05-12 A | TAEXELCC030003 | 100% |  |  |  |  | DUMP TRUCK [80 h]; WATER TANKER [40 h]; EXCAVATOR [40 h]; LABOR [60 h]; DUMP TRUCK DRIVER [80 h]; WATER TANKER DRIVER [40 h]; EXCAVATOR OPERATOR [40 h]; COMPACTOR [60 h]; COST [5024] | 5,024 | 5,024 |
| TAEXELCC0300011 |  | Trench Cut off Part 01 | 10d | 2026-11-29 | 2026-12-10 | TAEXRDCC030006 |  |  |  | -29.3d | 0d | DUMP TRUCK [160 h]; EXCAVATOR [120 h]; LABOR [60 h]; DUMP TRUCK DRIVER [160 h]; EXCAVATOR OPERATOR [120 h]; COST [37203.1] | 37,203.12 |  |
| TAEXELCC030005 |  | Cables Pulling | 4d | 2027-05-26 | 2027-05-31 | TAEXELCC030002, TAEXELCC030003, TAEXRDCC030008 |  |  |  | 13.9d | 0d | ELECTRACIAN [120 h]; LABOR [160 h]; COST [124000] | 124,000 |  |
| TAEXELCC0300041 |  | Trench Backfilling Part 01 | 4d | 2027-05-31 | 2027-06-05 | TAEXELCC030004, TAEXELCC030005 |  |  |  | 13.9d | 0d | DUMP TRUCK [80 h]; WATER TANKER [40 h]; EXCAVATOR [40 h]; LABOR [60 h]; DUMP TRUCK DRIVER [80 h]; WATER TANKER DRIVER [40 h]; EXCAVATOR OPERATOR [40 h]; COMPACTOR [60 h]; COST [7536] | 7,536 |  |
| TAEXELCC030006 |  | Poles RC Foundation | 3d | 2027-06-05 | 2027-06-08 | TAEXELCC030002, TAPQDVEL0005, TAEXELCC0300041 |  |  |  | 13.9d | 0d | EXCAVATOR [40 h]; LABOR [40 h]; EXCAVATOR OPERATOR [40 h]; COST [9510] | 9,510 |  |
| TAEXELCC030007 |  | Earthing cables | 2d | 2027-06-08 | 2027-06-10 | TAEXELCC030006, TAEXELCC020007 |  |  |  | 13.9d | 5.85d | ELECTRACIAN [80 h]; LABOR [40 h]; COST [2320] | 2,320 |  |
| TAEXELCC030008 |  | Lighting Pole Installation with Luminares | 8d | 2027-06-08 | 2027-06-17 | TAEXELCC030006, TAEXELCC030005 |  |  |  | 44.9d | 0d | ELECTRACIAN [40 h]; CRANE [40 h]; CRANE OPERATOR [40 h]; COST [50200] | 50,200 |  |

| ID | WBS | Activity | Duration | Start | Finish | Predecessors | Complete | Planned start | Planned finish | Total float | Free float | Resources | Cost | Actual cost |
| --- | --- | --- | --- | --- | --- | --- | --- | --- | --- | --- | --- | --- | --- | --- |
|  | 2 | **Telecommunication Works** |  | 2026-12-07 | 2027-05-13 |  |  |  |  |  |  |  |  |  |
| TAEXTCCC030001 |  | Trench Cut off | 10d | 2026-12-07 | 2026-12-19 | TAEXTCCC020001 FS+20d, TAGNML0006 SS |  |  |  | -17.61d | 0d | DUMP TRUCK [160 h]; EXCAVATOR [80 h]; LABOR [160 h]; DUMP TRUCK DRIVER [160 h]; EXCAVATOR OPERATOR [80 h]; COST [15230] | 15,230 |  |
| TAEXTCCC030002 |  | Drawpit and PVC Pipes Installation | 7d | 2027-04-19 | 2027-04-27 | TAEXTCCC030001, TAEXTCCC020002 |  |  |  | -20.27d | 0d | ELECTRACIAN [80 h]; EXCAVATOR [40 h]; LABOR [38 h]; EXCAVATOR OPERATOR [40 h]; COST [90230] | 90,230 |  |
| TAEXTCCC030003 |  | Road Crossing Ducts | 2d | 2027-04-27 | 2027-04-29 | TAEXTCCC030002 |  |  |  | 74.05d | 0d | DUMP TRUCK [32 h]; EXCAVATOR [16 h]; DUMP TRUCK DRIVER [32 h]; EXCAVATOR OPERATOR [16 h]; COST [8600] | 8,600 |  |
| TAEXTCCC030004 |  | Trench Backfilling | 12d | 2027-04-29 | 2027-05-13 | TAEXTCCC030003 |  |  |  | 74.05d | 22d | DUMP TRUCK [150 h]; WATER TANKER [144 h]; EXCAVATOR [96 h]; LABOR [160 h]; DUMP TRUCK DRIVER [150 h]; WATER TANKER DRIVER [144 h]; EXCAVATOR OPERATOR [96 h]; COMPACTOR [120 h]; COST [28300] | 28,300 |  |
|  | 3 | **CCTV Works** |  | 2026-10-27 | 2027-05-04 |  |  |  |  |  |  |  |  |  |
| TAEXCCCC030001 |  | Pipe Installation with manhole | 7d | 2026-10-27 | 2026-11-04 | TAPQDVCC0001 SS, TAGNML0008 SS |  |  |  | -15.55d | 0d | ELECTRACIAN [96 h]; LABOR [192 h]; COST [23144] | 23,144 |  |
| TAEXCCCC030002 |  | CCTV Swiches Lighting panels Installation | 12d | 2027-03-30 | 2027-04-13 | TAEXCCCC030001, TAEXCCCC020002 |  |  |  | -15.55d | 0d | ELECTRACIAN [96 h]; EXCAVATOR [40 h]; LABOR [96 h]; EXCAVATOR OPERATOR [40 h]; COST [4843] | 4,843 |  |
| TAEXCCCC030003 |  | Cable laying and connected with Panels | 8d | 2027-04-13 | 2027-04-22 | TAEXCCCC030002 |  |  |  | 85.45d | 0d | ELECTRACIAN [60 h]; LABOR [60 h]; COST [25943] | 25,943 |  |
| TAEXCCCC030004 |  | Pole Installation with IP Outdoor CCTV POE Camera | 10d | 2027-04-22 | 2027-05-04 | TAEXCCCC030003 |  |  |  | 85.45d | 35d | ELECTRACIAN [80 h]; EXCAVATOR [60 h]; LABOR [80 h]; EXCAVATOR OPERATOR [60 h]; COST [6446] | 6,446 |  |
|  | 4 | **Potable Networks** |  | 2026-03-31 | 2026-05-16 |  |  |  |  |  |  |  |  |  |
| TAEXPTCC030001 |  | Excavation works for Trench | 40d | 2026-03-31 A | 2026-05-16 A | TAEXPTCL020001, TAGNML0009 SS | 100% |  |  |  |  | DUMP TRUCK [120 h]; EXCAVATOR [60 h]; LABOR [30 h]; DUMP TRUCK DRIVER [120 h]; EXCAVATOR OPERATOR [60 h]; COST [56114.6] | 56,114.62 | 56,114.62 |
| TAEXPTCC030002 |  | Bedding Works | 24d | 2026-04-18 A | 2026-05-16 A | TAEXPTCC030001 | 100% | 2026-04-18 | 2026-05-14 |  |  | DUMP TRUCK [16 h]; EXCAVATOR [16 h]; LABOR [32 h]; DUMP TRUCK DRIVER [16 h]; EXCAVATOR OPERATOR [16 h]; COST [24695.9] | 24,695.92 | 24,695.92 |
| TAEXPTCC030003 |  | Install Pipes & Fittings | 23d | 2026-04-19 A | 2026-05-16 A | TAEXPTCC030002 | 100% | 2026-04-19 | 2026-05-14 |  |  | LABOR [96 h]; PLUMBER [48 h]; COST [90050] | 90,050 | 90,050 |
| TAEXPTCC030004 |  | Backfilling Works for Trench | 22d | 2026-04-21 A | 2026-05-16 A | TAEXPTCC030003 | 100% |  |  |  |  | DUMP TRUCK [160 h]; WATER TANKER [80 h]; EXCAVATOR [80 h]; LABOR [30 h]; DUMP TRUCK DRIVER [160 h]; WATER TANKER DRIVER [80 h]; EXCAVATOR OPERATOR [80 h]; COMPACTOR [80 h]; COST [30278] | 30,278 | 30,278 |
| TAEXPTCC030006 |  | Install fire hydrent | 5d | 2026-05-05 A | 2026-05-10 A | TAEXPTCC030003 | 100% |  |  |  |  | LABOR [96 h]; PLUMBER [48 h]; COST [50520] | 50,520 | 50,520 |
| TAEXPTCC030005 |  | Install Valves with fittings | 2d | 2026-05-09 A | 2026-05-10 A | TAEXPTCC030004 FF, TAPQDVPT0002 | 100% |  |  |  |  | LABOR [80 h]; PLUMBER [80 h]; COST [13500] | 13,500 | 13,500 |
| TAEXPTCC030007 |  | Inspection Test | 3d | 2026-05-13 A | 2026-05-16 A | TAEXPTCC030006 | 100% |  |  |  |  | WATER TANKER [32 h]; LABOR [32 h]; WATER TANKER DRIVER [32 h]; PLUMBER [32 h]; COST [4005] | 4,005 | 4,005 |
|  | 5 | **TSE Networks** |  | 2026-04-26 | 2026-05-16 |  |  |  |  |  |  |  |  |  |
| TAEXTSCC030001 |  | Excavation works for Trench | 18d | 2026-04-26 A | 2026-05-16 A | TAPQDVTS0001, TAGNML0010 SS | 100% |  |  |  |  | DUMP TRUCK [128 h]; EXCAVATOR [64 h]; LABOR [128 h]; DUMP TRUCK DRIVER [128 h]; EXCAVATOR OPERATOR [64 h]; COST [95320] | 95,320 | 95,320 |
| TAEXTSCC030002 |  | Bedding Works | 12d | 2026-05-03 A | 2026-05-16 A | TAEXTSCC030001 | 100% |  |  |  |  | DUMP TRUCK [16 h]; EXCAVATOR [16 h]; LABOR [32 h]; DUMP TRUCK DRIVER [16 h]; EXCAVATOR OPERATOR [16 h]; COST [26000] | 26,000 | 26,000 |
| TAEXTSCC030003 |  | Install Pipes & Fittings | 10d | 2026-05-05 A | 2026-05-16 A | TAEXTSCC030002 | 100% |  |  |  |  | LABOR [96 h]; PLUMBER [96 h]; COST [150215] | 150,215 | 150,215 |
| TAEXTSCC030004 |  | Backfilling Works for Trench | 10d | 2026-05-05 A | 2026-05-16 A | TAEXTSCC030003 | 100% |  |  |  |  | DUMP TRUCK [160 h]; WATER TANKER [80 h]; EXCAVATOR [80 h]; LABOR [80 h]; DUMP TRUCK DRIVER [160 h]; WATER TANKER DRIVER [80 h]; EXCAVATOR OPERATOR [80 h]; COMPACTOR [128 h]; COST [30150] | 30,150 | 30,150 |
| TAEXTSCC030005 |  | Inspection Test | 4d | 2026-05-12 A | 2026-05-16 A | TAEXTSCC030004 | 100% |  |  |  |  | WATER TANKER [32 h]; LABOR [32 h]; WATER TANKER DRIVER [32 h]; PLUMBER [32 h]; COST [80053.3] | 80,053.34 | 80,053.34 |

| ID | WBS | Activity | Duration | Start | Finish | Predecessors | Complete | Total float | Free float | Resources | Cost | Actual cost |
| --- | --- | --- | --- | --- | --- | --- | --- | --- | --- | --- | --- | --- |
|  | 7 | **Storm Networks** |  | 2026-02-17 | 2026-05-14 |  |  |  |  |  |  |  |
| TAEXSTCC030001 |  | Excavation works for Trench | 11d | 2026-02-17 A | 2026-03-01 A | TAEXSTCC020001 FS+20d | 100% |  |  | DUMP TRUCK [160 h]; EXCAVATOR [80 h]; LABOR [40 h]; DUMP TRUCK DRIVER [160 h]; EXCAVATOR OPERATOR [80 h]; COST [258650] | 258,650 | 258,650 |
| TAEXSTCC030002 |  | Bedding Works | 2d | 2026-03-12 A | 2026-03-14 A | TAEXSTCC030001 | 100% |  |  | DUMP TRUCK [32 h]; EXCAVATOR [24 h]; LABOR [48 h]; DUMP TRUCK DRIVER [32 h]; EXCAVATOR OPERATOR [24 h]; COST [97545.3] | 97,545.28 | 97,545.28 |
| TAEXSTCC030003 |  | Install GRP Pipes & Fittings | 37d | 2026-03-14 A | 2026-04-25 A | TAEXSTCC030002 | 100% |  |  | EXCAVATOR [80 h]; LABOR [320 h]; EXCAVATOR OPERATOR [80 h]; PLUMBER [320 h]; COST [475630] | 475,630 | 475,630 |
| TAEXSTCC030004 |  | Backfilling Works for Trench | 40d | 2026-03-28 A | 2026-05-12 A | TAEXSTCC030003 FS+15d | 100% |  |  | DUMP TRUCK [224 h]; WATER TANKER [112 h]; EXCAVATOR [112 h]; LABOR [224 h]; DUMP TRUCK DRIVER [224 h]; WATER TANKER DRIVER [112 h]; EXCAVATOR OPERATOR [112 h]; COMPACTOR [112 h]; COST [107600] | 107,600 | 107,600 |
| TAEXSTCC030005 |  | Manhole Installation with backfilling | 27d | 2026-04-12 A | 2026-05-12 A | TAEXSTCC030004 FF+10d, TAEXSTCC030003, TAPQDVST0006 | 100% |  |  | DUMP TRUCK [80 h]; EXCAVATOR [96 h]; LABOR [192 h]; DUMP TRUCK DRIVER [80 h]; EXCAVATOR OPERATOR [96 h]; PLUMBER [96 h]; MASON [192 h]; COST [178200] | 178,200 | 178,200 |
| TAEXSTCC030006 |  | Install Catch Basin with UPVC Pipes & Fittings | 9d | 2026-05-05 A | 2026-05-14 A | TAEXSTCC030005 | 100% |  |  | EXCAVATOR [40 h]; LABOR [80 h]; EXCAVATOR OPERATOR [40 h]; PLUMBER [80 h]; COST [128620] | 128,620 | 128,620 |
| TAEXSTCC030007 |  | Leakage Test | 6d | 2026-05-06 A | 2026-05-12 A | TAEXSTCC030005, TAEXSTCC030006 | 100% |  |  | WATER TANKER [24 h]; LABOR [24 h]; WATER TANKER DRIVER [24 h]; PLUMBER [24 h]; COST [19630] | 19,630 | 19,630 |
|  | 8 | **Upgrade local 21** |  | 2026-03-12 | 2027-06-27 |  |  |  |  |  |  |  |
|  | 22 | **Road Works** |  | 2027-05-26 | 2027-06-26 |  |  |  |  |  |  |  |
| TAEXRDCU210002 |  | Precast Concret Kerps | 9d | 2027-05-26 | 2027-06-06 | TAEXRDCC030008 |  | 21.9d | 0d | LABOR [580 h]; COST [34566] | 34,566 |  |
| TAEXRDCU210001 |  | BWC Asphalt Wearing Course with RC | 1d | 2027-06-06 | 2027-06-07 | TAEXRDCU210002 |  | 21.9d | 0d | ROLEER [16 h]; DUMP TRUCK [32 h]; MILLING MACHINE [8 h]; WHEEL ROLLER [16 h]; LABOR [40 h]; DUMP TRUCK DRIVER [32 h]; MILLING MACHINE OPERATOR [8 h]; WHEEL ROLLER OPERATOR [16 h]; ROLLER OPERATOR [16 h]; COST [411511] | 411,511 |  |
| TAEXRDCU210003 |  | Precast Interlock Works | 7d | 2027-06-07 | 2027-06-15 | TAEXRDCU210002, TAEXRDCU210001 |  | 21.9d | 0d | LABOR [840 h]; COST [237408] | 237,408 |  |
| TAEXRDCU210004 |  | Stone Paving works | 5d | 2027-06-15 | 2027-06-21 | TAEXRDCU210003 |  | 21.9d | 0d | DUMP TRUCK [32 h]; LABOR [160 h]; DUMP TRUCK DRIVER [32 h]; COST [247000] | 247,000 |  |
| TAEXRDCU210005 |  | Road Marking | 1d | 2027-06-21 | 2027-06-22 | TAEXRDCU210004 |  | 21.9d | 0d | LABOR [32 h]; COST [4100] | 4,100 |  |
| TAEXRDCU210006 |  | Traffic Sinage | 3d | 2027-06-22 | 2027-06-26 | TAEXRDCU210005 |  | 21.9d | 4d | EXCAVATOR [8 h]; LABOR [32 h]; EXCAVATOR OPERATOR [8 h]; COST [48000] | 48,000 |  |
|  | 13 | **Electrical Works** |  | 2026-12-10 | 2027-06-27 |  |  |  |  |  |  |  |
| TAEXELCU210001 |  | Trench Cut off | 13d | 2026-12-10 | 2026-12-26 | TAEXELCC0300011 |  | -29.3d | 0d | DUMP TRUCK [160 h]; EXCAVATOR [160 h]; LABOR [70 h]; DUMP TRUCK DRIVER [160 h]; EXCAVATOR OPERATOR [160 h]; COST [62350] | 62,350 |  |
| TAEXELCU210002 |  | Drawpit and PVC Pipes Installation | 12d | 2027-04-28 | 2027-05-12 | TAEXELCU210001, TAPQDVEL0005 FS+12d |  | 8.05d | 0d | ELECTRACIAN [80 h]; EXCAVATOR [40 h]; LABOR [80 h]; EXCAVATOR OPERATOR [40 h]; COST [12580] | 12,580 |  |
| TAEXELCU210003 |  | Road Crossing Ducts | 6d | 2027-05-12 | 2027-05-19 | TAEXELCU210002 |  | 8.05d | 0d | DUMP TRUCK [40 h]; EXCAVATOR [40 h]; DUMP TRUCK DRIVER [40 h]; EXCAVATOR OPERATOR [40 h]; COST [670] | 670 |  |
| TAEXELCU210006 |  | Poles RC Foundation | 8d | 2027-05-12 | 2027-05-22 | TAEXELCU210002, TAPQDVEL0005 |  | 30.05d | 0d | EXCAVATOR [40 h]; LABOR [40 h]; EXCAVATOR OPERATOR [40 h]; COST [24510] | 24,510 |  |
| TAEXELCU210004 |  | Trench Backfilling | 18d | 2027-05-19 | 2027-06-09 | TAEXELCU210003 |  | 8.05d | 0d | DUMP TRUCK [148 h]; WATER TANKER [48 h]; EXCAVATOR [74 h]; LABOR [120 h]; DUMP TRUCK DRIVER [148 h]; WATER TANKER DRIVER [48 h]; EXCAVATOR OPERATOR [74 h]; COMPACTOR [144 h]; COST [11250] | 11,250 |  |
| TAEXELCU210008 |  | Lighting Pole Installation with Luminares | 10d | 2027-05-22 | 2027-06-02 | TAEXELCU210006 |  | 57.05d | 12.15d | ELECTRACIAN [40 h]; CRANE [40 h]; CRANE OPERATOR [40 h]; COST [42000] | 42,000 |  |
| TAEXELCU210005 |  | Cables Pulling | 6d | 2027-06-09 | 2027-06-16 | TAEXELCU210002, TAEXELCU210003, TAEXELCU210004 |  | 8.05d | 0d | ELECTRACIAN [120 h]; LABOR [160 h]; COST [123933] | 123,932.7 |  |
| TAEXELCU210007 |  | Earthing cables | 4d | 2027-06-16 | 2027-06-21 | TAEXELCU210006, TAEXELCU210005, TAEXELCC030007 |  | 8.05d | 0d | ELECTRACIAN [80 h]; LABOR [40 h]; COST [4523] | 4,523 |  |
| TAEXELCU210009 |  | Install Substation & RMU | 9d | 2027-06-16 | 2027-06-27 | TAEXELCU210005, TAPQDVEL0004 |  | 37.05d | 66.35d | ELECTRACIAN [40 h]; CRANE [40 h]; CRANE OPERATOR [40 h]; COST [180000] | 180,000 |  |

| ID | WBS | Activity | Duration | Start | Finish | Predecessors | Complete | Remaining | Planned start | Planned finish | Total float | Free float | Resources | Cost | Actual cost |
| --- | --- | --- | --- | --- | --- | --- | --- | --- | --- | --- | --- | --- | --- | --- | --- |
|  | 1 | **Telecommunication Works** |  | 2027-01-11 | 2027-06-08 |  |  |  |  |  |  |  |  |  |  |
| TAEXTCCU210001 |  | Trench Cut off | 14d | 2027-01-11 | 2027-01-27 | TAEXTCCC030001 FS+20d |  |  |  |  | -17.61d | 0d | DUMP TRUCK [220 h]; EXCAVATOR [112 h]; LABOR [110 h]; DUMP TRUCK DRIVER [220 h]; EXCAVATOR OPERATOR [112 h]; COST [20214] | 20,214 |  |
| TAEXTCCU210002 |  | Drawpit and PVC Pipes Installation | 12d | 2027-04-27 | 2027-05-11 | TAEXTCCU210001, TAEXTCCC030002 |  |  |  |  | -20.27d | 0d | ELECTRACIAN [80 h]; EXCAVATOR [40 h]; LABOR [80 h]; EXCAVATOR OPERATOR [40 h]; COST [20240] | 20,240 |  |
| TAEXTCCU210003 |  | Road Crossing Ducts | 6d | 2027-05-11 | 2027-05-18 | TAEXTCCU210002 |  |  |  |  | 52.05d | 0d | DUMP TRUCK [40 h]; EXCAVATOR [40 h]; DUMP TRUCK DRIVER [40 h]; EXCAVATOR OPERATOR [40 h]; COST [15200] | 15,200 |  |
| TAEXTCCU210004 |  | Trench Backfilling | 18d | 2027-05-18 | 2027-06-08 | TAEXTCCU210003 |  |  |  |  | 52.05d | 0d | DUMP TRUCK [160 h]; WATER TANKER [144 h]; EXCAVATOR [160 h]; LABOR [160 h]; DUMP TRUCK DRIVER [160 h]; WATER TANKER DRIVER [144 h]; EXCAVATOR OPERATOR [160 h]; COMPACTOR [144 h]; COST [65800] | 65,800 |  |
|  | 10 | **CCTV Works** |  | 2026-11-04 | 2027-06-01 |  |  |  |  |  |  |  |  |  |  |
| TAEXCCCU210001 |  | Pipe Installation with manhole | 14d | 2026-11-04 | 2026-11-21 | TAEXCCCC030001 |  |  |  |  | -15.55d | 0d | ELECTRACIAN [96 h]; LABOR [192 h]; COST [27167] | 27,167 |  |
| TAEXCCCU210002 |  | CCTV Swiches Lighting panels Installation | 16d | 2027-04-13 | 2027-05-02 | TAEXCCCU210001, TAEXCCCC030002 |  |  |  |  | -15.55d | 0d | ELECTRACIAN [60 h]; EXCAVATOR [40 h]; LABOR [60 h]; EXCAVATOR OPERATOR [40 h]; COST [3647] | 3,647 |  |
| TAEXCCCU210003 |  | Cable laying and connected with Panels | 12d | 2027-05-02 | 2027-05-16 | TAEXCCCU210002 |  |  |  |  | 61.45d | 0d | ELECTRACIAN [160 h]; LABOR [320 h]; COST [19685] | 19,685 |  |
| TAEXCCCU210004 |  | Pole Installation with IP Outdoor CCTV POE Camera | 14d | 2027-05-16 | 2027-06-01 | TAEXCCCU210003 |  |  |  |  | 61.45d | 11d | ELECTRACIAN [112 h]; EXCAVATOR [78 h]; LABOR [112 h]; EXCAVATOR OPERATOR [78 h]; COST [4603] | 4,603 |  |
|  | 2 | **Potable Networks** |  | 2026-09-05 | 2027-04-17 |  |  |  |  |  |  |  |  |  |  |
| TAEXPTCU210001 |  | Excavation works for Trench | 20d | 2026-09-05 A | 2026-11-14 | TAEXPTCU280001 | 78% | 4.4d | 2026-10-01 | 2026-10-25 | 62.04d | 0d | DUMP TRUCK [280 h]; EXCAVATOR [140 h]; LABOR [70 h]; DUMP TRUCK DRIVER [280 h]; EXCAVATOR OPERATOR [140 h]; COST [43155] | 43,155 | 33,660.9 |
| TAEXPTCU210005 |  | Install Valves with fittings | 8d | 2026-09-27 A | 2027-03-17 | TAEXPTCU210004 FF, TAPQDVPT00021 | 15% | 6.8d | 2027-02-16 | 2027-02-25 | 94.32d | 0d | LABOR [128 h]; PLUMBER [128 h]; COST [9600] | 9,600 | 1,440 |
| TAEXPTCU210007 |  | Valve Chamber works | 16d | 2026-09-27 A | 2027-04-11 | TAEXPTCU210006, TAEXTSCU210006 | 15% | 13.6d | 2027-03-07 | 2027-03-25 | 94.32d | 0d | WATER TANKER [24 h]; EXCAVATOR [32 h]; CONCRET MIXER [24 h]; LABOR [56 h]; WATER TANKER DRIVER [24 h]; EXCAVATOR OPERATOR [32 h]; PLUMBER [48 h]; STEEL FIXER [48 h]; CARPENTER [32 h]; MASON [48 h]; CONCRET MIXER OPERATOR [24 h]; COST [20300] | 20,300 | 3,045 |
| TAEXPTCU210002 |  | Bedding Works | 2d | 2026-10-14 A | 2027-01-23 | TAEXPTCU210001, TAEXTSCU210002 | 25% | 1.5d | 2027-01-19 | 2027-01-21 | 112.12d | 13.5d | DUMP TRUCK [16 h]; EXCAVATOR [16 h]; LABOR [32 h]; DUMP TRUCK DRIVER [16 h]; EXCAVATOR OPERATOR [16 h]; COST [7050] | 7,050 | 1,762.5 |
| TAEXPTCU210003 |  | Install Pipes & Fittings | 15d | 2026-10-17 A | 2027-02-21 | TAEXPTCU210002, TAEXPTCC030003, TAEXTSCU210003 | 22% | 11.7d | 2027-02-06 | 2027-02-23 | 98.62d | 4.3d | LABOR [120 h]; PLUMBER [120 h]; COST [92350] | 92,350 | 20,317 |
| TAEXPTCU210004 |  | Backfilling Works for Trench | 16d | 2027-02-27 | 2027-03-17 | TAEXPTCU210003, TAEXTSCU210004 |  |  |  |  | 94.32d | 0d | DUMP TRUCK [260 h]; WATER TANKER [128 h]; EXCAVATOR [130 h]; LABOR [120 h]; DUMP TRUCK DRIVER [260 h]; WATER TANKER DRIVER [128 h]; EXCAVATOR OPERATOR [130 h]; COMPACTOR [128 h]; COST [24100] | 24,100 |  |
| TAEXPTCU210006 |  | Install fire hydrent | 8d | 2027-03-17 | 2027-03-27 | TAEXPTCU210003, TAEXPTCU210005 |  |  |  |  | 94.32d | 0d | LABOR [128 h]; PLUMBER [64 h]; COST [24000] | 24,000 |  |
| TAEXPTCU210008 |  | Inspection Test | 5d | 2027-04-11 | 2027-04-17 | TAEXPTCU210007, TAEXTSCU210007 |  |  |  |  | 94.32d | 0d | WATER TANKER [40 h]; LABOR [64 h]; WATER TANKER DRIVER [40 h]; PLUMBER [40 h]; COST [5200] | 5,200 |  |
|  | 3 | **TSE Networks** |  | 2026-09-27 | 2027-03-20 |  |  |  |  |  |  |  |  |  |  |
| TAEXTSCU210005 |  | Install Valves with fittings | 8d | 2026-09-27 A | 2027-02-27 | TAEXTSCU210004 FF | 15% | 6.8d | 2027-01-28 | 2027-02-07 | 104.72d | 0d | LABOR [128 h]; PLUMBER [128 h]; COST [11580] | 11,580 | 1,737 |
| TAEXTSCU210006 |  | Valve Chamber works | 16d | 2026-09-27 A | 2027-03-14 | TAEXTSCU210005 | 15% | 13.6d | 2027-02-07 | 2027-02-25 | 104.72d | 0d | WATER TANKER [30 h]; EXCAVATOR [48 h]; CONCRET MIXER [48 h]; LABOR [72 h]; WATER TANKER DRIVER [30 h]; EXCAVATOR OPERATOR [48 h]; PLUMBER [56 h]; STEEL FIXER [56 h]; CARPENTER [60 h]; MASON [56 h]; CONCRET MIXER OPERATOR [48 h]; COST [58600] | 58,600 | 8,790 |
| TAEXTSCU210001 |  | Excavation works for Trench | 29d | 2026-12-16 | 2027-01-19 | TAEXTSCU280001 |  |  |  |  | 51.42d | 0d | DUMP TRUCK [288 h]; EXCAVATOR [144 h]; LABOR [40 h]; DUMP TRUCK DRIVER [288 h]; EXCAVATOR OPERATOR [144 h]; COST [53205] | 53,205 |  |
| TAEXTSCU210002 |  | Bedding Works | 2d | 2027-01-19 | 2027-01-21 | TAEXTSCU210001 |  |  |  |  | 94.32d | 0d | DUMP TRUCK [16 h]; EXCAVATOR [16 h]; LABOR [32 h]; DUMP TRUCK DRIVER [16 h]; EXCAVATOR OPERATOR [16 h]; COST [10500] | 10,500 |  |
| TAEXTSCU210003 |  | Install Pipes & Fittings | 15d | 2027-01-21 | 2027-02-08 | TAEXTSCU210002, TAEXTSCC030003 |  |  |  |  | 94.32d | 0d | LABOR [240 h]; PLUMBER [240 h]; COST [155630] | 155,630 |  |
| TAEXTSCU210004 |  | Backfilling Works for Trench | 16d | 2027-02-08 | 2027-02-27 | TAEXTSCU210003 |  |  |  |  | 94.32d | 0d | DUMP TRUCK [128 h]; WATER TANKER [40 h]; EXCAVATOR [56 h]; LABOR [56 h]; DUMP TRUCK DRIVER [128 h]; WATER TANKER DRIVER [40 h]; EXCAVATOR OPERATOR [56 h]; COMPACTOR [128 h]; COST [30150] | 30,150 |  |
| TAEXTSCU210007 |  | Inspection Test | 5d | 2027-03-14 | 2027-03-20 | TAEXTSCU210006 |  |  |  |  | 113.32d | 0d | WATER TANKER [40 h]; LABOR [64 h]; WATER TANKER DRIVER [40 h]; PLUMBER [64 h]; COST [6500] | 6,500 |  |

| ID | WBS | Activity | Duration | Start | Finish | Predecessors | Complete | Remaining | Planned start | Planned finish | Total float | Free float | Resources | Cost | Actual cost |
| --- | --- | --- | --- | --- | --- | --- | --- | --- | --- | --- | --- | --- | --- | --- | --- |
|  | 4 | **Sewerage Networks** |  | 2026-08-09 | 2026-12-24 |  |  |  |  |  |  |  |  |  |  |
| TAEXSWCU210001 |  | Excavation works for Trench | 24d | 2026-08-09 A | 2026-11-11 | TAEXSWCL0100011 | 87% | 3.12d | 2026-09-27 | 2026-10-25 | 131.68d | 0d | DUMP TRUCK [448 h]; EXCAVATOR [224 h]; LABOR [224 h]; DUMP TRUCK DRIVER [448 h]; EXCAVATOR OPERATOR [224 h]; COST [54350] | 54,350 | 47,284.5 |
| TAEXSWCU210002 |  | Bedding Works | 3d | 2026-09-06 A | 2026-11-12 | TAEXSWCU210001 | 60% | 1.2d | 2026-11-02 | 2026-11-05 | 193.53d | 0d | DUMP TRUCK [16 h]; EXCAVATOR [16 h]; LABOR [48 h]; DUMP TRUCK DRIVER [16 h]; EXCAVATOR OPERATOR [16 h]; COST [35236.2] | 35,236.15 | 21,141.69 |
| TAEXSWCU210003 |  | Install GRP Pipes & Fittings | 11d | 2026-09-09 A | 2026-11-18 | TAEXSWCU210002 | 55% | 4.95d | 2026-11-04 | 2026-11-17 | 193.53d | 0d | EXCAVATOR [88 h]; LABOR [172 h]; EXCAVATOR OPERATOR [88 h]; PLUMBER [88 h]; COST [70250] | 70,250 | 38,637.5 |
| TAEXSWCU210005 |  | Manhole Installation with backfilling | 15d | 2026-09-09 A | 2026-12-20 | TAEXSWCU210004 FF+10d, TAEXSWCU210003, TAPQDVSW00021 | 20% | 12d | 2026-11-29 | 2026-12-16 | 191.35d | 0d | DUMP TRUCK [120 h]; EXCAVATOR [60 h]; LABOR [120 h]; DUMP TRUCK DRIVER [120 h]; EXCAVATOR OPERATOR [60 h]; PLUMBER [60 h]; MASON [32 h]; COST [85200] | 85,200 | 17,040 |
| TAEXSWCU210004 |  | Backfilling Works for Trench | 16d | 2026-10-18 A | 2026-12-06 | TAEXSWCU210003 FF+15d | 25% | 12d | 2026-11-23 | 2026-12-12 | 193.53d | 2.18d | DUMP TRUCK [256 h]; WATER TANKER [128 h]; EXCAVATOR [128 h]; LABOR [128 h]; DUMP TRUCK DRIVER [256 h]; WATER TANKER DRIVER [128 h]; EXCAVATOR OPERATOR [128 h]; COMPACTOR [128 h]; COST [44700] | 44,700 | 11,175 |
| TAEXSWCU210006 |  | Leakage Test | 4d | 2026-12-20 | 2026-12-24 | TAEXSWCU210005 |  |  |  |  | 191.35d | 59.79d | WATER TANKER [32 h]; LABOR [64 h]; WATER TANKER DRIVER [32 h]; PLUMBER [32 h]; COST [36894.4] | 36,894.45 |  |
|  | 5 | **Storm Networks** |  | 2026-03-12 | 2027-02-06 |  |  |  |  |  |  |  |  |  |  |
| TAEXSTCU210005 |  | Manhole Installation with backfilling | 36d | 2026-03-12 A | 2026-04-22 A | TAEXSTCU210004 FF+10d, TAEXSTCU210003 | 100% |  |  |  |  |  | DUMP TRUCK [100 h]; EXCAVATOR [120 h]; LABOR [240 h]; DUMP TRUCK DRIVER [100 h]; EXCAVATOR OPERATOR [120 h]; PLUMBER [120 h]; MASON [240 h]; COST [106000] | 106,000 | 106,000 |
| TAEXSTCU210001 |  | Excavation works for Trench | 42d | 2026-03-25 A | 2026-05-12 A | TAEXSTCL040001 | 100% |  |  |  |  |  | DUMP TRUCK [448 h]; EXCAVATOR [224 h]; LABOR [224 h]; DUMP TRUCK DRIVER [448 h]; EXCAVATOR OPERATOR [224 h]; COST [432020] | 432,020 | 432,020 |
| TAEXSTCU210002 |  | Bedding Works | 2d | 2026-04-09 A | 2026-04-11 A | TAEXSTCU210001 | 100% |  |  |  |  |  | DUMP TRUCK [160 h]; EXCAVATOR [80 h]; LABOR [80 h]; DUMP TRUCK DRIVER [160 h]; EXCAVATOR OPERATOR [80 h]; COST [83168] | 83,168.02 | 83,168.02 |
| TAEXSTCU210003 |  | Install GRP Pipes & Fittings | 6d | 2026-04-09 A | 2026-04-15 A | TAEXSTCU210002 | 100% |  |  |  |  |  | EXCAVATOR [88 h]; LABOR [172 h]; EXCAVATOR OPERATOR [88 h]; PLUMBER [172 h]; COST [233054] | 233,054 | 233,054 |
| TAEXSTCU210004 |  | Backfilling Works for Trench | 9d | 2026-04-15 A | 2026-04-25 A | TAEXSTCU210003 | 100% |  |  |  |  |  | DUMP TRUCK [256 h]; WATER TANKER [128 h]; EXCAVATOR [128 h]; LABOR [248 h]; DUMP TRUCK DRIVER [256 h]; WATER TANKER DRIVER [128 h]; EXCAVATOR OPERATOR [128 h]; COMPACTOR [128 h]; COST [94770] | 94,770 | 94,770 |
| TAEXSTCU210007 |  | Leakage Test | 4d | 2026-06-11 A | 2027-02-06 | TAEXSTCU210006, TAEXSTCU2100051, TAEXSTCC0200071 | 90% | 0.4d | 2027-04-13 | 2027-04-18 | 143.41d | 0d | WATER TANKER [32 h]; LABOR [32 h]; WATER TANKER DRIVER [32 h]; PLUMBER [32 h]; COST [15600] | 15,600 | 14,040 |
| TAEXSTCU2100051 |  | Manhole Installation with backfilling Part 01 | 5d | 2026-06-15 A | 2026-12-15 | TAEXSTCU2100041 FF+10d, TAEXSTCU210005, TAPQDVST00061 | 50% | 2.5d | 2026-11-07 | 2026-11-12 | 26d | 23.5d | DUMP TRUCK [100 h]; EXCAVATOR [120 h]; LABOR [240 h]; DUMP TRUCK DRIVER [100 h]; EXCAVATOR OPERATOR [120 h]; PLUMBER [120 h]; MASON [240 h]; COST [26500] | 26,500 | 13,250 |
| TAEXSTCU2100031 |  | Install GRP Pipes & Fittings Part 01 | 3d | 2026-07-05 A | 2026-10-21 | TAEXSTCU210003, TAEXSTCU2100021 | 50% | 1.5d | 2026-07-21 | 2026-07-25 | 47.54d | 0d | EXCAVATOR [88 h]; LABOR [172 h]; EXCAVATOR OPERATOR [88 h]; PLUMBER [172 h]; COST [12266] | 12,266 | 6,133 |
| TAEXSTCU2100041 |  | Backfilling Works for Trench Part 01 | 5d | 2026-07-05 A | 2026-11-08 | TAEXSTCU2100031 FF+15d | 50% | 2.5d | 2026-08-05 | 2026-08-11 | 47.54d | 21.54d | DUMP TRUCK [256 h]; WATER TANKER [128 h]; EXCAVATOR [128 h]; LABOR [248 h]; DUMP TRUCK DRIVER [256 h]; WATER TANKER DRIVER [128 h]; EXCAVATOR OPERATOR [128 h]; COMPACTOR [128 h]; COST [10530] | 10,530 | 5,265 |
| TAEXSTCU2100021 |  | Bedding Works Part 01 | 1d | 2026-10-19 | 2026-10-19 | TAEXSTCL0400021 |  |  |  |  | 47.54d | 0d | DUMP TRUCK [160 h]; EXCAVATOR [80 h]; LABOR [80 h]; DUMP TRUCK DRIVER [160 h]; EXCAVATOR OPERATOR [80 h]; COST [4377.26] | 4,377.26 |  |
| TAEXSTCU210006 |  | Install Catch Basin with UPVC Pipes & Fittings | 14d | 2027-01-11 | 2027-01-27 | TAEXSTCL090006, TAEXSTCU2100051 |  |  |  |  | 2.5d | 0d | EXCAVATOR [56 h]; LABOR [112 h]; EXCAVATOR OPERATOR [56 h]; PLUMBER [112 h]; COST [108500] | 108,500 |  |
|  | 6 | **Upgrade local 26** |  | 2026-07-12 | 2027-10-04 |  |  |  |  |  |  |  |  |  |  |
|  | 14 | **Electrical Works** |  | 2026-07-12 | 2027-10-04 |  |  |  |  |  |  |  |  |  |  |
| TAEXELCU260001 |  | Trench Cut off | 14d | 2026-07-12 A | 2027-01-04 | TAEXELCU210001 | 44% | 7.84d | 2026-10-04 | 2026-10-20 | -29.3d | 0d | DUMP TRUCK [160 h]; EXCAVATOR [112 h]; LABOR [60 h]; DUMP TRUCK DRIVER [160 h]; EXCAVATOR OPERATOR [112 h]; COST [10230] | 10,230 | 4,501.2 |
| TAEXELCU260005 |  | Cables Pulling | 4d | 2026-08-01 A | 2027-04-27 | TAEXELCU260002, TAEXELCU260003, TAEXELCU260004 | 39% | 2.44d | 2027-04-06 | 2027-04-11 | 107.55d | 134.36d | ELECTRACIAN [120 h]; LABOR [160 h]; COST [124000] | 124,000 | 48,360 |
| TAEXELCU260003 |  | Road Crossing Ducts | 4d | 2026-08-15 A | 2026-08-16 A | TAEXELCU260002 | 100% |  | 2027-03-31 | 2027-04-05 |  |  | DUMP TRUCK [40 h]; EXCAVATOR [40 h]; DUMP TRUCK DRIVER [40 h]; EXCAVATOR OPERATOR [40 h]; COST [450] | 450 | 450 |
| TAEXELCU260002 |  | Drawpit and PVC Pipes Installation | 12d | 2026-08-19 A | 2026-08-22 A | TAEXELCU260001, TAPQDVEL0005 | 100% |  | 2027-03-24 | 2027-04-07 |  |  | ELECTRACIAN [80 h]; EXCAVATOR [40 h]; LABOR [80 h]; EXCAVATOR OPERATOR [40 h]; COST [5670] | 5,670 | 5,670 |
| TAEXELCU260004 |  | Trench Backfilling | 13d | 2026-09-03 A | 2027-04-25 | TAEXELCU260003 | 38% | 8.06d | 2027-04-06 | 2027-04-21 | 107.55d | 0d | DUMP TRUCK [104 h]; WATER TANKER [32 h]; EXCAVATOR [72 h]; LABOR [72 h]; DUMP TRUCK DRIVER [104 h]; WATER TANKER DRIVER [32 h]; EXCAVATOR OPERATOR [72 h]; COMPACTOR [20 h]; COST [9580] | 9,580 | 3,640.4 |
| TAEXELCU260006 |  | Poles RC Foundation | 6d | 2027-04-14 | 2027-04-21 | TAEXELCU260002, TAPQDVEL0005 |  |  |  |  | 85.05d | 0d | EXCAVATOR [40 h]; LABOR [40 h]; EXCAVATOR OPERATOR [40 h]; COST [18210] | 18,210 |  |
| TAEXELCU260008 |  | Lighting Pole Installation with Luminares | 8d | 2027-04-21 | 2027-05-01 | TAEXELCU260006 |  |  |  |  | 85.05d | 40.15d | ELECTRACIAN [40 h]; CRANE [40 h]; CRANE OPERATOR [40 h]; COST [32000] | 32,000 |  |
| TAEXELCU260007 |  | Earthing cables | 4d | 2027-09-29 | 2027-10-04 | TAEXELCU260006, TAEXELCU260005, TAEXELCU330007 |  |  |  |  | -26.81d | 0d | ELECTRACIAN [80 h]; LABOR [40 h]; COST [4523] | 4,523 |  |

| ID | WBS | Activity | Duration | Start | Finish | Predecessors | Complete | Planned start | Planned finish | Total float | Free float | Resources | Cost | Actual cost |
| --- | --- | --- | --- | --- | --- | --- | --- | --- | --- | --- | --- | --- | --- | --- |
|  | 10 | **CCTV Works** |  | 2026-11-21 | 2027-06-06 |  |  |  |  |  |  |  |  |  |
| TAEXCCCU260001 |  | Pipe Installation with manhole | 10d | 2026-11-21 | 2026-12-02 | TAEXCCCU210001 |  |  |  | -15.55d | 0d | ELECTRACIAN [96 h]; LABOR [192 h]; COST [24056] | 24,056 |  |
| TAEXCCCU260002 |  | CCTV Swiches Lighting panels Installation | 12d | 2027-05-02 | 2027-05-16 | TAEXCCCU260001, TAEXCCCU210002 |  |  |  | -15.55d | 0d | ELECTRACIAN [100 h]; EXCAVATOR [40 h]; LABOR [100 h]; EXCAVATOR OPERATOR [40 h]; COST [2264] | 2,264 |  |
| TAEXCCCU260003 |  | Cable laying and connected with Panels | 8d | 2027-05-16 | 2027-05-25 | TAEXCCCU260002 |  |  |  | 57.45d | 0d | ELECTRACIAN [160 h]; LABOR [320 h]; COST [17767] | 17,767 |  |
| TAEXCCCU260004 |  | Pole Installation with IP Outdoor CCTV POE Camera | 10d | 2027-05-25 | 2027-06-06 | TAEXCCCU260003 |  |  |  | 57.45d | 7d | ELECTRACIAN [80 h]; EXCAVATOR [56 h]; LABOR [80 h]; EXCAVATOR OPERATOR [56 h]; COST [6446] | 6,446 |  |
|  | 3 | **Local Road 10** |  | 2025-10-21 | 2027-06-23 |  |  |  |  |  |  |  |  |  |
|  | 12 | **Road Works** |  | 2025-10-21 | 2027-05-20 |  |  |  |  |  |  |  |  |  |
| TAEXRDCL100001 |  | Road Excavation and Disposal | 19d | 2025-10-21 A | 2025-11-11 A | TAEXRDCL090001 | 100% |  |  |  |  | DUMP TRUCK [320 h]; EXCAVATOR [160 h]; LABOR [80 h]; DUMP TRUCK DRIVER [320 h]; EXCAVATOR OPERATOR [160 h]; COST [269834] | 269,834 | 269,834 |
| TAEXRDCL100002 |  | Backfilling Works for Road | 10d | 2025-11-13 A | 2025-11-24 A | TAEXRDCL100001 | 100% |  |  |  |  | ROLEER [112 h]; DUMP TRUCK [224 h]; WATER TANKER [112 h]; EXCAVATOR [112 h]; GRADER [112 h]; LABOR [112 h]; GRADER OPERATOR [112 h]; DUMP TRUCK DRIVER [224 h]; WATER TANKER DRIVER [112 h]; EXCAVATOR OPERATOR [112 h]; ROLLER OPERATOR [112 h]; COST [112746] | 112,746 | 112,746 |
| TAEXRDCL100003 |  | Subgrade Works | 4d | 2026-12-14 | 2026-12-19 | TAEXRDCL100002, TAEXRDCL0100031 |  |  |  | 43.45d | 40.95d | ROLEER [56 h]; DUMP TRUCK [110 h]; WATER TANKER [56 h]; EXCAVATOR [56 h]; GRADER [56 h]; LABOR [56 h]; GRADER OPERATOR [56 h]; DUMP TRUCK DRIVER [110 h]; WATER TANKER DRIVER [56 h]; EXCAVATOR OPERATOR [56 h]; ROLLER OPERATOR [56 h]; COST [75432.2] | 75,432.16 |  |
| TAEXRDCL100004 |  | ABC aggregate Base Course Works | 4d | 2027-02-04 | 2027-02-09 | TAEXRDCL100003, TAEXSTCL100006, TAPQDVRD00011 FS+17d |  |  |  | 2.5d | 0d | ROLEER [64 h]; DUMP TRUCK [240 h]; WATER TANKER [64 h]; EXCAVATOR [64 h]; GRADER [64 h]; LABOR [64 h]; GRADER OPERATOR [64 h]; DUMP TRUCK DRIVER [240 h]; WATER TANKER DRIVER [64 h]; EXCAVATOR OPERATOR [64 h]; ROLLER OPERATOR [64 h]; COST [37893] | 37,893 |  |
| TAEXRDCL100005 |  | MBC1 layer | 1d | 2027-02-09 | 2027-02-10 | TAEXRDCL100004 |  |  |  | 2.5d | 0d | MC1 sprinker [8 h]; MC DRIVER [8 h]; COST [2458] | 2,458 |  |
| TAEXRDCL100006 |  | BBC Base Course | 2d | 2027-02-10 | 2027-02-13 | TAEXRDCL100005 |  |  |  | 2.5d | 0d | ROLEER [48 h]; DUMP TRUCK [72 h]; MILLING MACHINE [24 h]; WHEEL ROLLER [48 h]; LABOR [100 h]; DUMP TRUCK DRIVER [72 h]; MILLING MACHINE OPERATOR [24 h]; WHEEL ROLLER OPERATOR [48 h]; ROLLER OPERATOR [48 h]; COST [204278] | 204,278 |  |
| TAEXRDCL100008 |  | Precast Concret Kerps | 14d | 2027-02-13 | 2027-03-01 | TAEXRDCL100006 |  |  |  | 2.5d | 0d | LABOR [450 h]; COST [252724] | 252,724 |  |
| TAEXRDCL100007 |  | BWC Asphalt Wearing Course with RC | 1d | 2027-04-29 | 2027-05-01 | TAEXRDCL100006, TAEXRDCL100008, TAEXRDCL010007 |  |  |  | 52.5d | 0d | ROLEER [16 h]; DUMP TRUCK [32 h]; MILLING MACHINE [8 h]; WHEEL ROLLER [16 h]; LABOR [40 h]; DUMP TRUCK DRIVER [32 h]; MILLING MACHINE OPERATOR [8 h]; WHEEL ROLLER OPERATOR [16 h]; ROLLER OPERATOR [16 h]; COST [111511] | 111,511 |  |
| TAEXRDCL100009 |  | Precast Interlock Works | 13d | 2027-05-01 | 2027-05-16 | TAEXRDCL100008, TAEXRDCL100007 |  |  |  | 52.5d | 0d | LABOR [840 h]; COST [178055] | 178,055 |  |
| TAEXRDCL100010 |  | Stone Paving works | 2d | 2027-05-16 | 2027-05-18 | TAEXRDCL100009 |  |  |  | 52.5d | 0d | DUMP TRUCK [32 h]; LABOR [160 h]; DUMP TRUCK DRIVER [32 h]; COST [21000] | 21,000 |  |
| TAEXRDCL100011 |  | Road Marking | 1d | 2027-05-18 | 2027-05-19 | TAEXRDCL100010 |  |  |  | 52.5d | 0d | LABOR [32 h]; COST [4100] | 4,100 |  |
| TAEXRDCL100012 |  | Traffic Sinage | 1d | 2027-05-19 | 2027-05-20 | TAEXRDCL100011 |  |  |  | 52.5d | 34.6d | EXCAVATOR [8 h]; LABOR [32 h]; EXCAVATOR OPERATOR [8 h]; COST [33450] | 33,450 |  |
|  | 25 | **Electrical Works** |  | 2026-09-01 | 2027-06-23 |  |  |  |  |  |  |  |  |  |
| TAEXELCL100009 |  | Install Substation & RMU | 9d | 2026-09-01 A | 2026-09-02 A | TAEXELCL100005, TAPQDVEL0004 | 100% | 2027-05-04 | 2027-05-15 |  |  | ELECTRACIAN [40 h]; CRANE [40 h]; CRANE OPERATOR [40 h]; COST [180000] | 180,000 | 180,000 |
| TAEXELCL100001 |  | Trench Cut off | 12d | 2027-01-04 | 2027-01-18 | TAEXELCU260001, TAEXELCU260001 FF |  |  |  | -29.3d | 0d | DUMP TRUCK [80 h]; EXCAVATOR [60 h]; LABOR [40 h]; DUMP TRUCK DRIVER [80 h]; EXCAVATOR OPERATOR [60 h]; COST [23506.2] | 23,506.25 |  |
| TAEXELCL100002 |  | Drawpit and PVC Pipes Installation | 10d | 2027-04-14 | 2027-04-26 | TAEXELCL100001, TAPQDVEL0005 |  |  |  | 42.05d | 0d | ELECTRACIAN [80 h]; EXCAVATOR [40 h]; LABOR [80 h]; EXCAVATOR OPERATOR [40 h]; COST [4560] | 4,560 |  |
| TAEXELCL100003 |  | Road Crossing Ducts | 2d | 2027-04-26 | 2027-04-28 | TAEXELCL100002 |  |  |  | 42.05d | 0d | DUMP TRUCK [40 h]; EXCAVATOR [40 h]; DUMP TRUCK DRIVER [40 h]; EXCAVATOR OPERATOR [40 h]; COST [260] | 260 |  |
| TAEXELCL100006 |  | Poles RC Foundation | 3d | 2027-04-26 | 2027-04-29 | TAEXELCL100002, TAPQDVEL0005 |  |  |  | 53.05d | 0d | EXCAVATOR [40 h]; LABOR [40 h]; EXCAVATOR OPERATOR [40 h]; COST [9510] | 9,510 |  |
| TAEXELCL100004 |  | Trench Backfilling | 10d | 2027-04-28 | 2027-05-10 | TAEXELCL100003 |  |  |  | 42.05d | 0d | DUMP TRUCK [160 h]; WATER TANKER [80 h]; EXCAVATOR [80 h]; LABOR [80 h]; DUMP TRUCK DRIVER [160 h]; WATER TANKER DRIVER [80 h]; EXCAVATOR OPERATOR [80 h]; COMPACTOR [144 h]; COST [5630] | 5,630 |  |
| TAEXELCL100008 |  | Lighting Pole Installation with Luminares | 4d | 2027-04-29 | 2027-05-04 | TAEXELCL100006 |  |  |  | 82.05d | 37.15d | ELECTRACIAN [40 h]; CRANE [40 h]; CRANE OPERATOR [40 h]; COST [91050] | 91,050 |  |
| TAEXELCL100005 |  | Cables Pulling | 2d | 2027-05-10 | 2027-05-12 | TAEXELCL100002, TAEXELCL100003, TAEXELCL100004 |  |  |  | 42.05d | 0d | ELECTRACIAN [120 h]; LABOR [160 h]; COST [116000] | 116,000 |  |
| TAEXELCL100007 |  | Earthing cables | 2d | 2027-06-21 | 2027-06-23 | TAEXELCL100006, TAEXELCL100005, TAEXELCU210007 |  |  |  | 8.05d | 0d | ELECTRACIAN [80 h]; LABOR [40 h]; COST [2320] | 2,320 |  |

| ID | WBS | Activity | Duration | Start | Finish | Predecessors | Complete | Remaining | Planned start | Planned finish | Total float | Free float | Resources | Cost | Actual cost |
| --- | --- | --- | --- | --- | --- | --- | --- | --- | --- | --- | --- | --- | --- | --- | --- |
|  | 14 | **Telecommunication Works** |  | 2027-02-03 | 2027-05-30 |  |  |  |  |  |  |  |  |  |  |
| TAEXTCCL100001 |  | Trench Cut off | 5d | 2027-02-03 | 2027-02-09 | TAEXTCCU210001 FS+6d |  |  |  |  | -17.61d | 0d | DUMP TRUCK [80 h]; EXCAVATOR [40 h]; LABOR [20 h]; DUMP TRUCK DRIVER [80 h]; EXCAVATOR OPERATOR [40 h]; COST [7500] | 7,500 |  |
| TAEXTCCL100002 |  | Drawpit and PVC Pipes Installation | 4d | 2027-05-11 | 2027-05-16 | TAEXTCCL100001, TAEXTCCU210002 |  |  |  |  | -20.27d | 0d | ELECTRACIAN [80 h]; EXCAVATOR [32 h]; LABOR [16 h]; EXCAVATOR OPERATOR [32 h]; COST [80250] | 80,250 |  |
| TAEXTCCL100003 |  | Road Crossing Ducts | 2d | 2027-05-16 | 2027-05-18 | TAEXTCCL100002 |  |  |  |  | 60.05d | 0d | DUMP TRUCK [32 h]; EXCAVATOR [16 h]; DUMP TRUCK DRIVER [32 h]; EXCAVATOR OPERATOR [16 h]; COST [8600] | 8,600 |  |
| TAEXTCCL100004 |  | Trench Backfilling | 10d | 2027-05-18 | 2027-05-30 | TAEXTCCL100003 |  |  |  |  | 60.05d | 8d | DUMP TRUCK [140 h]; WATER TANKER [80 h]; EXCAVATOR [80 h]; LABOR [160 h]; DUMP TRUCK DRIVER [140 h]; WATER TANKER DRIVER [80 h]; EXCAVATOR OPERATOR [80 h]; COMPACTOR [80 h]; COST [26430] | 26,430 |  |
|  | 10 | **CCTV Works** |  | 2026-12-02 | 2027-06-14 |  |  |  |  |  |  |  |  |  |  |
| TAEXCCCL100001 |  | Pipe Installation with manhole | 8d | 2026-12-02 | 2026-12-12 | TAEXCCCU260001 |  |  |  |  | -15.55d | 0d | ELECTRACIAN [96 h]; LABOR [192 h]; COST [23853.5] | 23,853.54 |  |
| TAEXCCCL100002 |  | CCTV Swiches Lighting panels Installation | 10d | 2027-05-16 | 2027-05-27 | TAEXCCCL100001, TAEXCCCU260002 |  |  |  |  | -15.55d | 0d | ELECTRACIAN [330 h]; EXCAVATOR [40 h]; LABOR [330 h]; EXCAVATOR OPERATOR [40 h]; COST [2515] | 2,515 |  |
| TAEXCCCL100003 |  | Cable laying and connected with Panels | 6d | 2027-05-27 | 2027-06-03 | TAEXCCCL100002 |  |  |  |  | 50.45d | 0d | ELECTRACIAN [160 h]; LABOR [320 h]; COST [24655] | 24,655 |  |
| TAEXCCCL100004 |  | Pole Installation with IP Outdoor CCTV POE Camera | 9d | 2027-06-03 | 2027-06-14 | TAEXCCCL100003 |  |  |  |  | 50.45d | 0d | ELECTRACIAN [72 h]; EXCAVATOR [60 h]; LABOR [72 h]; EXCAVATOR OPERATOR [60 h]; COST [5911] | 5,911 |  |
|  | 1 | **Potable Networks** |  | 2026-08-01 | 2027-03-04 |  |  |  |  |  |  |  |  |  |  |
| TAEXPTCL100001 |  | Excavation works for Trench | 8d | 2026-08-01 A | 2026-08-16 A | TAEXPTCL080001 | 100% |  | 2026-09-07 | 2026-09-16 |  |  | DUMP TRUCK [90 h]; EXCAVATOR [45 h]; LABOR [20 h]; DUMP TRUCK DRIVER [90 h]; EXCAVATOR OPERATOR [45 h]; COST [42500] | 42,500 | 42,500 |
| TAEXPTCL100002 |  | Bedding Works | 2d | 2026-08-19 A | 2026-08-20 A | TAEXPTCL100001 | 100% |  | 2026-09-16 | 2026-09-19 |  |  | DUMP TRUCK [16 h]; EXCAVATOR [16 h]; LABOR [32 h]; DUMP TRUCK DRIVER [16 h]; EXCAVATOR OPERATOR [16 h]; COST [7050] | 7,050 | 7,050 |
| TAEXPTCL100003 |  | Install Pipes & Fittings | 8d | 2026-08-19 A | 2026-09-20 A | TAEXPTCL100002 | 100% |  | 2026-09-19 | 2026-09-28 |  |  | LABOR [128 h]; PLUMBER [64 h]; COST [78112] | 78,112 | 78,112 |
| TAEXPTCL100007 |  | Valve Chamber works | 14d | 2026-09-17 A | 2027-02-28 | TAEXPTCL100006 | 90% | 1.4d | 2027-02-16 | 2027-03-04 | 112.41d | 0d | WATER TANKER [32 h]; EXCAVATOR [56 h]; CONCRET MIXER [32 h]; LABOR [112 h]; WATER TANKER DRIVER [32 h]; EXCAVATOR OPERATOR [56 h]; PLUMBER [56 h]; STEEL FIXER [56 h]; CARPENTER [56 h]; MASON [56 h]; CONCRET MIXER OPERATOR [32 h]; COST [20050] | 20,050 | 18,045 |
| TAEXPTCL100005 |  | Install Valves with fittings | 4d | 2026-09-17 A | 2027-02-20 | TAEXPTCL100004 FF, TAPQDVPT00021, TAEXPTCL080005 | 90% | 0.4d | 2027-02-04 | 2027-02-09 | 117.73d | 0d | LABOR [64 h]; PLUMBER [64 h]; COST [25285.9] | 25,285.92 | 22,757.33 |
| TAEXPTCL100006 |  | Install fire hydrent | 6d | 2026-10-04 A | 2027-02-27 | TAEXPTCL100003, TAEXPTCL080006 | 90% | 0.6d | 2027-02-15 | 2027-02-22 | 111.96d | 0d | LABOR [96 h]; PLUMBER [48 h]; COST [24000] | 24,000 | 21,600 |
| TAEXPTCL100004 |  | Backfilling Works for Trench | 12d | 2026-10-10 A | 2026-11-17 | TAEXPTCL100003 | 25% | 9d | 2026-11-01 | 2026-11-15 | 198.16d | 2.24d | DUMP TRUCK [180 h]; WATER TANKER [90 h]; EXCAVATOR [90 h]; LABOR [40 h]; DUMP TRUCK DRIVER [180 h]; WATER TANKER DRIVER [90 h]; EXCAVATOR OPERATOR [90 h]; COMPACTOR [96 h]; COST [22100] | 22,100 | 5,525 |
| TAEXPTCL100008 |  | Inspection Test | 4d | 2027-02-28 | 2027-03-04 | TAEXPTCL100007 |  |  |  |  | 131.56d | 0d | WATER TANKER [32 h]; LABOR [32 h]; WATER TANKER DRIVER [32 h]; PLUMBER [32 h]; COST [16964.6] | 16,964.62 |  |
|  | 2 | **TSE Networks** |  | 2026-07-15 | 2026-10-18 |  |  |  |  |  |  |  |  |  |  |
| TAEXTSCL100001 |  | Excavation works for Trench | 28d | 2026-07-15 A | 2026-08-18 A | TAEXTSCL080001 | 100% |  | 2026-09-28 | 2026-10-31 |  |  | DUMP TRUCK [96 h]; EXCAVATOR [48 h]; LABOR [48 h]; DUMP TRUCK DRIVER [96 h]; EXCAVATOR OPERATOR [48 h]; COST [62300] | 62,300 | 62,300 |
| TAEXTSCL100002 |  | Bedding Works | 2d | 2026-08-10 A | 2026-08-18 A | TAEXTSCL100001, TAEXPTCL100002 | 100% |  | 2026-11-02 | 2026-11-04 |  |  | DUMP TRUCK [16 h]; EXCAVATOR [16 h]; LABOR [32 h]; DUMP TRUCK DRIVER [16 h]; EXCAVATOR OPERATOR [16 h]; COST [4000] | 4,000 | 4,000 |
| TAEXTSCL100003 |  | Install Pipes & Fittings | 8d | 2026-08-11 A | 2026-08-29 A | TAEXTSCL100002, TAEXPTCL100003 | 100% |  | 2026-11-04 | 2026-11-14 |  |  | LABOR [128 h]; PLUMBER [128 h]; COST [72300] | 72,300 | 72,300 |
| TAEXTSCL100006 |  | Valve Chamber works | 14d | 2026-08-29 A | 2026-10-04 A | TAEXTSCL100005 | 100% |  | 2026-12-10 | 2026-12-27 |  |  | WATER TANKER [24 h]; EXCAVATOR [32 h]; CONCRET MIXER [32 h]; LABOR [56 h]; WATER TANKER DRIVER [24 h]; EXCAVATOR OPERATOR [32 h]; PLUMBER [56 h]; STEEL FIXER [56 h]; CARPENTER [60 h]; MASON [56 h]; CONCRET MIXER OPERATOR [32 h]; COST [35200] | 35,200 | 35,200 |
| TAEXTSCL100004 |  | Backfilling Works for Trench | 12d | 2026-08-30 A | 2026-09-05 A | TAEXTSCL100003, TAEXPTCL100004 | 100% |  | 2026-11-11 | 2026-11-25 |  |  | DUMP TRUCK [32 h]; WATER TANKER [24 h]; EXCAVATOR [24 h]; LABOR [48 h]; DUMP TRUCK DRIVER [32 h]; WATER TANKER DRIVER [24 h]; EXCAVATOR OPERATOR [24 h]; COMPACTOR [20 h]; COST [20100] | 20,100 | 20,100 |
| TAEXTSCL100005 |  | Install Valves with fittings | 4d | 2026-09-06 A | 2026-10-04 A | TAEXTSCL100004 FF, TAEXTSCL080005 | 100% |  | 2026-12-09 | 2026-12-14 |  |  | LABOR [64 h]; PLUMBER [64 h]; COST [6320] | 6,320 | 6,320 |
| TAEXTSCL100007 |  | Inspection Test | 4d | 2026-10-17 A | 2026-10-18 A | TAEXTSCL100006, TAEXPTCL100008 | 100% |  | 2027-03-13 | 2027-03-17 |  |  | WATER TANKER [32 h]; LABOR [64 h]; WATER TANKER DRIVER [32 h]; PLUMBER [64 h]; COST [8253.34] | 8,253.34 | 8,253.34 |

| ID | WBS | Activity | Duration | Start | Finish | Predecessors | Complete | Remaining | Planned start | Planned finish | Total float | Free float | Resources | Cost | Actual cost |
| --- | --- | --- | --- | --- | --- | --- | --- | --- | --- | --- | --- | --- | --- | --- | --- |
|  | 3 | **Sewerage Networks** |  | 2025-12-01 | 2026-09-19 |  |  |  |  |  |  |  |  |  |  |
| TAEXSWCL100001 |  | Excavation works for Trench | 6d | 2025-12-01 A | 2025-12-07 A | TAEXSWCL010001 | 100% |  |  |  |  |  | DUMP TRUCK [112 h]; EXCAVATOR [64 h]; LABOR [32 h]; DUMP TRUCK DRIVER [112 h]; EXCAVATOR OPERATOR [64 h]; COST [68998.5] | 68,998.5 | 68,998.5 |
| TAEXSWCL100002 |  | Bedding Works | 2d | 2025-12-27 A | 2025-12-28 A | TAEXSWCL100001 | 100% |  |  |  |  |  | DUMP TRUCK [16 h]; EXCAVATOR [16 h]; LABOR [48 h]; DUMP TRUCK DRIVER [16 h]; EXCAVATOR OPERATOR [16 h]; COST [22311.8] | 22,311.84 | 22,311.84 |
| TAEXSWCL100003 |  | Install GRP Pipes & Fittings | 5d | 2025-12-29 A | 2026-01-03 A | TAEXSWCL100002 | 100% |  |  |  |  |  | EXCAVATOR [56 h]; LABOR [112 h]; EXCAVATOR OPERATOR [56 h]; PLUMBER [56 h]; COST [52449.5] | 52,449.5 | 52,449.5 |
| TAEXSWCL100004 |  | Backfilling Works for Trench | 8d | 2026-01-15 A | 2026-01-24 A | TAEXSWCL100003 | 100% |  |  |  |  |  | DUMP TRUCK [224 h]; WATER TANKER [112 h]; EXCAVATOR [112 h]; LABOR [112 h]; DUMP TRUCK DRIVER [224 h]; WATER TANKER DRIVER [112 h]; EXCAVATOR OPERATOR [112 h]; COMPACTOR [112 h]; COST [28435] | 28,435 | 28,435 |
| TAEXSWCL100005 |  | Manhole Installation with backfilling | 9d | 2026-04-09 A | 2026-04-19 A | TAEXSWCL100003, TAEXSWCL100004 | 100% |  |  |  |  |  | DUMP TRUCK [96 h]; EXCAVATOR [96 h]; LABOR [48 h]; DUMP TRUCK DRIVER [96 h]; EXCAVATOR OPERATOR [96 h]; PLUMBER [96 h]; MASON [32 h]; COST [57426] | 57,426 | 57,426 |
| TAEXSWCL100006 |  | Leakage Test | 3d | 2026-06-15 A | 2026-09-19 A | TAEXSWCL1000051, TAEXTSCL100007 | 100% |  | 2027-05-01 | 2027-05-04 |  |  | WATER TANKER [24 h]; LABOR [48 h]; WATER TANKER DRIVER [24 h]; PLUMBER [24 h]; COST [25694.5] | 25,694.45 | 25,694.45 |
| TAEXSWCL1000011 |  | Excavation works for Trench Part 01 | 3d | 2026-09-08 A | 2026-09-10 A | TAEXSWCC0200011 | 100% |  | 2026-09-19 | 2026-09-22 |  |  | DUMP TRUCK [112 h]; EXCAVATOR [64 h]; LABOR [32 h]; DUMP TRUCK DRIVER [112 h]; EXCAVATOR OPERATOR [64 h]; COST [3631.5] | 3,631.5 | 3,631.5 |
| TAEXSWCL1000021 |  | Bedding Works Part 01 | 2d | 2026-09-08 A | 2026-09-10 A | TAEXSWCL100002, TAEXSWCL1000011, TAEXSTCL100006 | 100% |  | 2026-12-30 | 2027-01-02 |  |  | DUMP TRUCK [16 h]; EXCAVATOR [16 h]; LABOR [48 h]; DUMP TRUCK DRIVER [16 h]; EXCAVATOR OPERATOR [16 h]; COST [1174.31] | 1,174.31 | 1,174.31 |
| TAEXSWCL1000031 |  | Install GRP Pipes & Fittings Part 01 | 5d | 2026-09-08 A | 2026-09-10 A | TAEXSWCL100003, TAEXSWCL1000021 | 100% |  | 2027-01-02 | 2027-01-07 |  |  | EXCAVATOR [56 h]; LABOR [112 h]; EXCAVATOR OPERATOR [56 h]; PLUMBER [56 h]; COST [2760.5] | 2,760.5 | 2,760.5 |
| TAEXSWCL1000041 |  | Backfilling Works for Trench Part 01 | 5d | 2026-09-08 A | 2026-09-10 A | TAEXSWCL1000031 FF+15d, TAEXSWCL100004 | 100% |  | 2027-01-19 | 2027-01-25 |  |  | DUMP TRUCK [224 h]; WATER TANKER [112 h]; EXCAVATOR [112 h]; LABOR [112 h]; DUMP TRUCK DRIVER [224 h]; WATER TANKER DRIVER [112 h]; EXCAVATOR OPERATOR [112 h]; COMPACTOR [112 h]; COST [1815] | 1,815 | 1,815 |
| TAEXSWCL1000051 |  | Manhole Installation with backfilling Part 01 | 5d | 2026-09-10 A | 2026-09-13 A | TAEXSWCL100005, TAPQDVSW00021, TAEXSWCL1000041 | 100% |  | 2027-01-03 | 2027-01-09 |  |  | DUMP TRUCK [96 h]; EXCAVATOR [96 h]; LABOR [48 h]; DUMP TRUCK DRIVER [96 h]; EXCAVATOR OPERATOR [96 h]; PLUMBER [96 h]; MASON [32 h]; COST [10134] | 10,134 | 10,134 |
|  | 4 | **Storm Networks** |  | 2026-08-03 | 2027-02-04 |  |  |  |  |  |  |  |  |  |  |
| TAEXSTCL100001 |  | Excavation works for Trench | 13d | 2026-08-03 A | 2026-08-05 A | TAEXSTCU21000611 | 100% |  | 2026-09-19 | 2026-10-04 |  |  | DUMP TRUCK [112 h]; EXCAVATOR [64 h]; LABOR [32 h]; DUMP TRUCK DRIVER [112 h]; EXCAVATOR OPERATOR [64 h]; COST [96320] | 96,320 | 96,320 |
| TAEXSTCL100002 |  | Bedding Works | 4d | 2026-08-16 A | 2026-08-19 A | TAEXSTCL100001 | 100% |  | 2026-09-01 | 2026-09-06 |  |  | DUMP TRUCK [16 h]; EXCAVATOR [16 h]; LABOR [48 h]; DUMP TRUCK DRIVER [16 h]; EXCAVATOR OPERATOR [16 h]; COST [28900] | 28,900 | 28,900 |
| TAEXSTCL100003 |  | Install GRP Pipes & Fittings | 7d | 2026-08-16 A | 2026-08-19 A | TAEXSTCL100002 | 100% |  | 2026-09-06 | 2026-09-14 |  |  | EXCAVATOR [56 h]; LABOR [88 h]; EXCAVATOR OPERATOR [56 h]; PLUMBER [112 h]; COST [171167] | 171,167.36 | 171,167.36 |
| TAEXSTCL100005 |  | Manhole Installation with backfilling | 12d | 2026-08-22 A | 2026-09-06 A | TAEXSTCL100004 FF+27d, TAEXSTCL100003, TAPQDVST00061 | 100% |  | 2026-10-15 | 2026-10-29 |  |  | DUMP TRUCK [80 h]; EXCAVATOR [96 h]; LABOR [192 h]; DUMP TRUCK DRIVER [80 h]; EXCAVATOR OPERATOR [96 h]; PLUMBER [96 h]; MASON [192 h]; COST [68152.6] | 68,152.64 | 68,152.64 |
| TAEXSTCL100004 |  | Backfilling Works for Trench | 14d | 2026-08-29 A | 2026-08-30 A | TAEXSTCL100003 FF+15d | 100% |  | 2026-09-03 | 2026-09-20 |  |  | DUMP TRUCK [224 h]; WATER TANKER [56 h]; EXCAVATOR [112 h]; LABOR [56 h]; DUMP TRUCK DRIVER [224 h]; WATER TANKER DRIVER [56 h]; EXCAVATOR OPERATOR [112 h]; COMPACTOR [112 h]; COST [104147] | 104,147.36 | 104,147.36 |
| TAEXSTCL100007 |  | Leakage Test | 3d | 2026-09-03 A | 2026-09-06 A | TAEXSTCL100005, TAEXSTCL100006, TAEXSWCL100006 | 100% |  | 2027-03-14 | 2027-03-17 |  |  | WATER TANKER [24 h]; LABOR [24 h]; WATER TANKER DRIVER [24 h]; PLUMBER [24 h]; COST [11200] | 11,200 | 11,200 |
| TAEXSTCL100006 |  | Install Catch Basin with UPVC Pipes & Fittings | 9d | 2026-10-18 A | 2027-02-04 | TAEXSTCL100005, TAEXSTCU210006 | 25% | 6.75d | 2027-01-27 | 2027-02-07 | 2.5d | 0d | EXCAVATOR [36 h]; LABOR [280 h]; EXCAVATOR OPERATOR [36 h]; PLUMBER [280 h]; COST [85220] | 85,220 | 21,305 |
|  | NEWPROJ-16-1-9-4 | **AMANAH ROAD** |  | 2026-03-15 | 2027-08-22 |  |  |  |  |  |  |  |  |  |  |
| TAEXRDCA010001 |  | Preperation Wprks for Existing layer | 5d | 2026-03-15 A | 2026-03-19 A | TAGNML0022 SS | 100% |  |  |  |  |  | ROLEER [40 h]; DUMP TRUCK [98 h]; WATER TANKER [40 h]; EXCAVATOR [112 h]; GRADER [98 h]; LABOR [98 h]; GRADER OPERATOR [98 h]; DUMP TRUCK DRIVER [98 h]; WATER TANKER DRIVER [40 h]; EXCAVATOR OPERATOR [112 h]; ROLLER OPERATOR [40 h]; COST [100000] | 100,000 | 100,000 |
| TAEXRDCA020002 |  | MBC1 LAYER | 9d | 2026-03-21 A | 2026-03-30 A | TAEXRDCA010001 | 100% |  |  |  |  |  | MC1 sprinker [40 h]; MC DRIVER [40 h]; COST [2458] | 2,458 | 2,458 |
| TAEXRDCA020003 |  | BBC BASE COURSE | 10d | 2026-03-24 A | 2026-04-04 A | TAEXRDCA020002 | 100% |  |  |  |  |  | ROLEER [120 h]; DUMP TRUCK [70 h]; MILLING MACHINE [60 h]; WHEEL ROLLER [120 h]; LABOR [250 h]; DUMP TRUCK DRIVER [70 h]; MILLING MACHINE OPERATOR [60 h]; WHEEL ROLLER OPERATOR [120 h]; ROLLER OPERATOR [120 h]; COST [1639606] | 1,639,606.4 | 1,639,606.4 |
| TAEXRDCA030004 |  | Precast Concret Kerps | 22d | 2026-04-15 A | 2026-05-10 A | TAEXRDCA020003 | 100% |  |  |  |  |  | LABOR [160 h]; COST [308213] | 308,212.8 | 308,212.8 |
| TAEXRDCA040005 |  | Road Marking | 18d | 2026-04-25 A | 2026-05-14 A | TAEXRDCA020003, TAEXRDCA030004 | 100% |  |  |  |  |  | LABOR [80 h]; COST [266059] | 266,059.14 | 266,059.14 |
| TAEXRDCA050006 |  | Traffic Sinage | 4d | 2026-05-21 A | 2026-05-25 A | TAEXRDCA040005 FS+6d | 100% |  |  |  |  |  | EXCAVATOR [15 h]; LABOR [55 h]; EXCAVATOR OPERATOR [15 h]; COST [31357.7] | 31,357.72 | 31,357.72 |
| TAEXRDCA050007 |  | Backfilling Works for Road | 25d | 2027-07-24 | 2027-08-22 | TAGNZM0005 |  |  |  |  | 11.84d | 0d | ROLEER [40 h]; DUMP TRUCK [98 h]; WATER TANKER [40 h]; EXCAVATOR [112 h]; GRADER [98 h]; LABOR [98 h]; GRADER OPERATOR [98 h]; DUMP TRUCK DRIVER [98 h]; WATER TANKER DRIVER [40 h]; EXCAVATOR OPERATOR [112 h]; ROLLER OPERATOR [40 h]; COST [166320] | 166,320 |  |

| ID | WBS | Activity | Duration | Start | Finish | Predecessors | Complete | Remaining | Planned start | Planned finish | Total float | Free float | Resources | Cost | Actual cost |
| --- | --- | --- | --- | --- | --- | --- | --- | --- | --- | --- | --- | --- | --- | --- | --- |
|  | 10 | **ZONE 2** |  | 2025-10-11 | 2027-08-30 |  |  |  |  |  |  |  |  |  |  |
|  | 1 | **Collector Road 01** |  | 2025-10-21 | 2027-07-19 |  |  |  |  |  |  |  |  |  |  |
|  | 13 | **Road Works** |  | 2025-10-21 | 2027-04-28 |  |  |  |  |  |  |  |  |  |  |
| TAEXRDCC010001 |  | Road Excavation and Disposal | 9d | 2025-10-21 A | 2025-10-31 A | TAEXRDCL100001 | 100% |  | 2025-10-21 | 2025-10-30 |  |  | DUMP TRUCK [320 h]; EXCAVATOR [160 h]; LABOR [80 h]; DUMP TRUCK DRIVER [320 h]; EXCAVATOR OPERATOR [160 h]; COST [256599] | 256,598.97 | 256,598.97 |
| TAEXRDCC010002 |  | Backfilling Works for Road | 9d | 2025-11-06 A | 2025-11-16 A | TAEXRDCC010001 | 100% |  |  |  |  |  | ROLEER [32 h]; DUMP TRUCK [128 h]; WATER TANKER [32 h]; EXCAVATOR [56 h]; GRADER [56 h]; LABOR [32 h]; GRADER OPERATOR [56 h]; DUMP TRUCK DRIVER [128 h]; WATER TANKER DRIVER [32 h]; EXCAVATOR OPERATOR [56 h]; ROLLER OPERATOR [32 h]; COST [195332] | 195,331.95 | 195,331.95 |
| TAEXRDCC010003 |  | Subgrade Works | 10d | 2026-02-10 A | 2026-02-21 A | TAEXRDCC010002 | 100% |  |  |  |  |  | ROLEER [56 h]; DUMP TRUCK [110 h]; WATER TANKER [56 h]; EXCAVATOR [56 h]; GRADER [56 h]; LABOR [56 h]; GRADER OPERATOR [56 h]; DUMP TRUCK DRIVER [110 h]; WATER TANKER DRIVER [56 h]; EXCAVATOR OPERATOR [56 h]; ROLLER OPERATOR [56 h]; COST [91896.6] | 91,896.64 | 91,896.64 |
| TAEXRDCC0100011 |  | Road Excavation and Disposal Part 01 | 3d | 2027-01-05 | 2027-01-09 | TAEXRDCC010001, TAEXTSCC010006 |  |  |  |  | 6.46d | 0d | DUMP TRUCK [320 h]; EXCAVATOR [160 h]; LABOR [80 h]; DUMP TRUCK DRIVER [320 h]; EXCAVATOR OPERATOR [160 h]; COST [2591.91] | 2,591.91 |  |
| TAEXRDCC0100021 |  | Backfilling Works for Road Part 01 | 3d | 2027-01-09 | 2027-01-12 | TAEXRDCC0100011, TAEXRDCC010002 |  |  |  |  | 6.46d | 0d | ROLEER [32 h]; DUMP TRUCK [128 h]; WATER TANKER [32 h]; EXCAVATOR [56 h]; GRADER [56 h]; LABOR [32 h]; GRADER OPERATOR [56 h]; DUMP TRUCK DRIVER [128 h]; WATER TANKER DRIVER [32 h]; EXCAVATOR OPERATOR [56 h]; ROLLER OPERATOR [32 h]; COST [1973.05] | 1,973.05 |  |
| TAEXRDCC0100031 |  | Subgrade Works Part 01 | 13d | 2027-01-12 | 2027-01-27 | TAEXRDCC010003, TAEXRDCC0100021 |  |  |  |  | 6.46d | 0d | ROLEER [56 h]; DUMP TRUCK [110 h]; WATER TANKER [56 h]; EXCAVATOR [56 h]; GRADER [56 h]; LABOR [56 h]; GRADER OPERATOR [56 h]; DUMP TRUCK DRIVER [110 h]; WATER TANKER DRIVER [56 h]; EXCAVATOR OPERATOR [56 h]; ROLLER OPERATOR [56 h]; COST [45262.5] | 45,262.52 |  |
| TAEXRDCC010004 |  | ABC aggregate Base Course Works | 18d | 2027-01-27 | 2027-02-17 | TAEXSTCC010006, TAEXRDCC0100031, TAPQDVRD00011 |  |  |  |  | 6.46d | 0d | ROLEER [64 h]; DUMP TRUCK [240 h]; WATER TANKER [64 h]; EXCAVATOR [64 h]; GRADER [64 h]; LABOR [64 h]; GRADER OPERATOR [64 h]; DUMP TRUCK DRIVER [240 h]; WATER TANKER DRIVER [64 h]; EXCAVATOR OPERATOR [64 h]; ROLLER OPERATOR [64 h]; COST [322626] | 322,626 |  |
| TAEXRDCC010005 |  | MBC1 layer | 2d | 2027-02-17 | 2027-02-20 | TAEXRDCC010004 |  |  |  |  | 6.46d | 0d | MC1 sprinker [8 h]; MC DRIVER [8 h]; COST [15000] | 15,000 |  |
| TAEXRDCC010006 |  | BBC Base Course | 4d | 2027-02-20 | 2027-02-24 | TAEXRDCC010005 |  |  |  |  | 6.46d | 3.96d | ROLEER [48 h]; DUMP TRUCK [72 h]; MILLING MACHINE [24 h]; WHEEL ROLLER [48 h]; LABOR [100 h]; DUMP TRUCK DRIVER [72 h]; MILLING MACHINE OPERATOR [24 h]; WHEEL ROLLER OPERATOR [48 h]; ROLLER OPERATOR [48 h]; COST [348586] | 348,586 |  |
| TAEXRDCC010008 |  | Precast Concret Kerps | 18d | 2027-03-01 | 2027-03-22 | TAEXRDCC010006, TAEXRDCL100008 |  |  |  |  | 2.5d | 0d | LABOR [580 h]; COST [187181] | 187,181 |  |
| TAEXRDCC010007 |  | BWC Asphalt Wearing Course with RC | 2d | 2027-03-22 | 2027-03-24 | TAEXRDCC010008 |  |  |  |  | 75.71d | 0d | ROLEER [16 h]; DUMP TRUCK [32 h]; MILLING MACHINE [8 h]; WHEEL ROLLER [16 h]; LABOR [40 h]; DUMP TRUCK DRIVER [32 h]; MILLING MACHINE OPERATOR [8 h]; WHEEL ROLLER OPERATOR [16 h]; ROLLER OPERATOR [16 h]; COST [311511] | 311,511 |  |
| TAEXRDCC010009 |  | Precast Interlock Works | 16d | 2027-03-24 | 2027-04-12 | TAEXRDCC010008, TAEXRDCC010007, TAEXRDCC010006 |  |  |  |  | 75.71d | 0d | LABOR [840 h]; COST [57408] | 57,408 |  |
| TAEXRDCC010010 |  | Stone Paving works | 9d | 2027-04-12 | 2027-04-22 | TAEXRDCC010009 |  |  |  |  | 75.71d | 0d | DUMP TRUCK [32 h]; LABOR [160 h]; DUMP TRUCK DRIVER [32 h]; COST [35000] | 35,000 |  |
| TAEXRDCC010011 |  | Road Marking | 2d | 2027-04-22 | 2027-04-25 | TAEXRDCC010010 |  |  |  |  | 75.71d | 0d | LABOR [32 h]; COST [6500] | 6,500 |  |
| TAEXRDCC010012 |  | Traffic Sinage | 3d | 2027-04-25 | 2027-04-28 | TAEXRDCC010011 |  |  |  |  | 75.71d | 73.87d | EXCAVATOR [8 h]; LABOR [32 h]; EXCAVATOR OPERATOR [8 h]; COST [45500] | 45,500 |  |
|  | 11 | **Electrical Works** |  | 2026-09-20 | 2027-06-26 |  |  |  |  |  |  |  |  |  |  |
| TAEXELCC010003 |  | Road Crossing Ducts | 2d | 2026-09-20 A | 2027-04-28 | TAEXELCC010002 | 13% | 1.74d | 2027-04-05 | 2027-04-07 | 45.31d | 0d | DUMP TRUCK [40 h]; EXCAVATOR [40 h]; DUMP TRUCK DRIVER [40 h]; EXCAVATOR OPERATOR [40 h]; COST [2600] | 2,600 | 338 |
| TAEXELCC010001 |  | Trench Cut off | 13d | 2027-01-18 | 2027-02-02 | TAEXELCL100001 |  |  |  |  | -29.3d | 0d | DUMP TRUCK [160 h]; EXCAVATOR [128 h]; LABOR [80 h]; DUMP TRUCK DRIVER [160 h]; EXCAVATOR OPERATOR [128 h]; COST [69026.2] | 69,026.25 |  |
| TAEXELCC010002 |  | Drawpit and PVC Pipes Installation | 10d | 2027-04-14 | 2027-04-26 | TAEXELCC010001, TAPQDVEL0005 |  |  |  |  | 45.31d | 0d | ELECTRACIAN [80 h]; EXCAVATOR [40 h]; LABOR [80 h]; EXCAVATOR OPERATOR [40 h]; COST [10250] | 10,250 |  |
| TAEXELCC010006 |  | Poles RC Foundation | 3d | 2027-04-26 | 2027-04-29 | TAEXELCC010002, TAPQDVEL0005 |  |  |  |  | 55.05d | 17.74d | EXCAVATOR [40 h]; LABOR [40 h]; EXCAVATOR OPERATOR [40 h]; COST [9510] | 9,510 |  |
| TAEXELCC010004 |  | Trench Backfilling | 15d | 2027-04-28 | 2027-05-16 | TAEXELCC010003 |  |  |  |  | 45.31d | 0d | DUMP TRUCK [160 h]; WATER TANKER [144 h]; EXCAVATOR [160 h]; LABOR [160 h]; DUMP TRUCK DRIVER [160 h]; WATER TANKER DRIVER [144 h]; EXCAVATOR OPERATOR [160 h]; COMPACTOR [144 h]; COST [15605] | 15,605 |  |
| TAEXELCC010005 |  | Cables Pulling | 4d | 2027-05-16 | 2027-05-20 | TAEXELCC010002, TAEXELCC010003, TAEXELCC010004 |  |  |  |  | 45.31d | 0d | ELECTRACIAN [120 h]; LABOR [160 h]; COST [124000] | 124,000 |  |
| TAEXELCC010008 |  | Lighting Pole Installation with Luminares | 10d | 2027-05-20 | 2027-06-01 | TAEXELCC010006, TAEXELCC010005 |  |  |  |  | 45.31d | 6.26d | ELECTRACIAN [40 h]; CRANE [40 h]; CRANE OPERATOR [40 h]; COST [41500] | 41,500 |  |
| TAEXELCC010007 |  | Earthing cables | 2d | 2027-06-23 | 2027-06-26 | TAEXELCC010006, TAEXELCL100007 |  |  |  |  | 8.05d | 0d | ELECTRACIAN [80 h]; LABOR [40 h]; COST [2320] | 2,320 |  |

| ID | WBS | Activity | Duration | Start | Finish | Predecessors | Complete | Remaining | Planned start | Planned finish | Total float | Free float | Resources | Cost | Actual cost |
| --- | --- | --- | --- | --- | --- | --- | --- | --- | --- | --- | --- | --- | --- | --- | --- |
|  | 1 | **Telecommunication Works** |  | 2026-09-20 | 2027-06-16 |  |  |  |  |  |  |  |  |  |  |
| TAEXTCCC010003 |  | Road Crossing Ducts | 2d | 2026-09-20 A | 2027-05-30 | TAEXTCCC010002 | 20% | 1.6d | 2027-05-11 | 2027-05-13 | 31.45d | 0d | DUMP TRUCK [32 h]; EXCAVATOR [16 h]; DUMP TRUCK DRIVER [40 h]; EXCAVATOR OPERATOR [16 h]; COST [8600] | 8,600 | 1,720 |
| TAEXTCCC010001 |  | Trench Cut off | 23d | 2027-02-09 | 2027-03-08 | TAEXTCCL100001 |  |  |  |  | -17.61d | 0d | DUMP TRUCK [140 h]; EXCAVATOR [128 h]; LABOR [60 h]; DUMP TRUCK DRIVER [140 h]; EXCAVATOR OPERATOR [128 h]; COST [23581] | 23,581 |  |
| TAEXTCCC010002 |  | Drawpit and HDPE Pipes Installation | 10d | 2027-05-16 | 2027-05-27 | TAEXTCCC010001, TAEXTCCL100002 |  |  |  |  | -20.27d | 0d | ELECTRACIAN [80 h]; EXCAVATOR [40 h]; LABOR [80 h]; EXCAVATOR OPERATOR [40 h]; COST [70230] | 70,230 |  |
| TAEXTCCC010004 |  | Trench Backfilling | 15d | 2027-05-30 | 2027-06-16 | TAEXTCCC010003 |  |  |  |  | 31.45d | 9.72d | DUMP TRUCK [80 h]; WATER TANKER [40 h]; EXCAVATOR [60 h]; LABOR [60 h]; DUMP TRUCK DRIVER [80 h]; WATER TANKER DRIVER [40 h]; EXCAVATOR OPERATOR [60 h]; COMPACTOR [80 h]; COST [32500] | 32,500 |  |
|  | 2 | **CCTV Works** |  | 2026-12-12 | 2027-07-19 |  |  |  |  |  |  |  |  |  |  |
| TAEXCCCC010001 |  | Pipe Installation with manhole | 12d | 2026-12-12 | 2026-12-26 | TAEXCCCL100001 |  |  |  |  | -15.55d | 0d | ELECTRACIAN [96 h]; LABOR [192 h]; COST [24088] | 24,088 |  |
| TAEXCCCC010002 |  | CCTV Swiches Lighting panels Installation | 16d | 2027-05-27 | 2027-06-15 | TAEXCCCC010001, TAEXCCCL100002 |  |  |  |  | -15.55d | 0d | ELECTRACIAN [330 h]; EXCAVATOR [40 h]; LABOR [330 h]; EXCAVATOR OPERATOR [40 h]; COST [3647] | 3,647 |  |
| TAEXCCCC010003 |  | Cable laying and connected with Panels | 12d | 2027-06-15 | 2027-06-29 | TAEXCCCC010002 |  |  |  |  | 20.45d | 0d | ELECTRACIAN [96 h]; LABOR [96 h]; COST [26572] | 26,572 |  |
| TAEXCCCC010004 |  | Pole Installation with IP Outdoor CCTV POE Camera | 17d | 2027-06-29 | 2027-07-19 | TAEXCCCC010003 |  |  |  |  | 20.45d | 36.72d | ELECTRACIAN [128 h]; EXCAVATOR [76 h]; LABOR [128 h]; EXCAVATOR OPERATOR [76 h]; COST [5930] | 5,930 |  |
|  | 3 | **Potable Networks** |  | 2026-05-06 | 2027-03-23 |  |  |  |  |  |  |  |  |  |  |
| TAEXPTCC010001 |  | Excavation works for Trench | 9d | 2026-05-06 A | 2026-05-16 A | TAEXPTCL070001 | 100% |  |  |  |  |  | DUMP TRUCK [140 h]; EXCAVATOR [70 h]; LABOR [60 h]; DUMP TRUCK DRIVER [140 h]; EXCAVATOR OPERATOR [70 h]; COST [23919.8] | 23,919.75 | 23,919.75 |
| TAEXPTCC010002 |  | Bedding Works | 2d | 2026-06-20 A | 2026-11-07 | TAEXPTCC0100011 | 27% | 1.46d | 2026-10-03 | 2026-10-05 | 6.46d | 0d | DUMP TRUCK [16 h]; EXCAVATOR [16 h]; LABOR [32 h]; DUMP TRUCK DRIVER [16 h]; EXCAVATOR OPERATOR [16 h]; COST [16723.9] | 16,723.91 | 4,515.46 |
| TAEXPTCC010003 |  | Install Pipes & Fittings | 14d | 2026-06-21 A | 2026-11-18 | TAEXPTCC010002 | 27% | 10.22d | 2026-10-05 | 2026-10-21 | 6.46d | 0d | LABOR [224 h]; PLUMBER [112 h]; COST [114224] | 114,224.08 | 30,840.5 |
| TAEXPTCC010004 |  | Backfilling Works for Trench | 16d | 2026-06-24 A | 2026-12-01 | TAEXPTCC010003 | 27% | 11.68d | 2026-09-08 | 2026-09-27 | 8.78d | 2.32d | DUMP TRUCK [240 h]; WATER TANKER [120 h]; EXCAVATOR [120 h]; LABOR [50 h]; DUMP TRUCK DRIVER [240 h]; WATER TANKER DRIVER [120 h]; EXCAVATOR OPERATOR [120 h]; COMPACTOR [128 h]; COST [35300] | 35,300 | 9,531 |
| TAEXPTCC010007 |  | Valve Chamber works | 20d | 2026-09-26 A | 2027-03-18 | TAEXPTCC010006, TAEXPTCC020007 | 15% | 17d | 2027-02-22 | 2027-03-17 | 111.96d | 0d | WATER TANKER [40 h]; EXCAVATOR [40 h]; CONCRET MIXER [80 h]; LABOR [80 h]; WATER TANKER DRIVER [40 h]; EXCAVATOR OPERATOR [40 h]; PLUMBER [80 h]; STEEL FIXER [80 h]; CARPENTER [80 h]; MASON [80 h]; CONCRET MIXER OPERATOR [80 h]; COST [32500] | 32,500 | 4,875 |
| TAEXPTCC010005 |  | Install Valves with fittings | 8d | 2026-09-26 A | 2027-02-10 | TAEXPTCC010004 FF, TAPQDVPT00021, TAEXPTCL090005 | 15% | 6.8d | 2027-01-18 | 2027-01-27 | 117.73d | 0d | LABOR [128 h]; PLUMBER [128 h]; COST [29185.9] | 29,185.92 | 4,377.89 |
| TAEXPTCC0100011 |  | Excavation works for Trench Part 01 | 10d | 2026-10-24 | 2026-11-04 | TAEXPTCL0700011, TAEXPTCL0900011 |  |  |  |  | 6.46d | 0d | DUMP TRUCK [140 h]; EXCAVATOR [70 h]; LABOR [60 h]; DUMP TRUCK DRIVER [140 h]; EXCAVATOR OPERATOR [70 h]; COST [29235.2] | 29,235.25 |  |
| TAEXPTCC010006 |  | Install fire hydrent | 7d | 2027-02-04 | 2027-02-13 | TAEXPTCC010003, TAEXPTCL090006 |  |  |  |  | 84.06d | 0d | LABOR [112 h]; PLUMBER [56 h]; COST [20100] | 20,100 |  |
| TAEXPTCC010008 |  | Inspection Test | 4d | 2027-03-18 | 2027-03-23 | TAEXPTCC010007 |  |  |  |  | 111.96d | 0d | WATER TANKER [32 h]; LABOR [32 h]; WATER TANKER DRIVER [32 h]; PLUMBER [32 h]; COST [16964.6] | 16,964.62 |  |
|  | 4 | **TSE Networks** |  | 2026-09-06 | 2027-03-28 |  |  |  |  |  |  |  |  |  |  |
| TAEXTSCC010001 |  | Excavation works for Trench | 28d | 2026-09-06 A | 2026-11-14 | TAEXTSCL0900011 | 90% | 2.8d | 2026-09-29 | 2026-11-01 | 8.34d | 0d | DUMP TRUCK [288 h]; EXCAVATOR [144 h]; LABOR [40 h]; DUMP TRUCK DRIVER [288 h]; EXCAVATOR OPERATOR [144 h]; COST [39693.3] | 39,693.34 | 35,724.01 |
| TAEXTSCC010005 |  | Install Valves with fittings | 8d | 2026-09-26 A | 2026-12-23 | TAEXTSCC010004 FF | 15% | 6.8d | 2026-11-23 | 2026-12-02 | 6.46d | 0d | LABOR [128 h]; PLUMBER [128 h]; COST [13200] | 13,200 | 1,980 |
| TAEXTSCC010006 |  | Valve Chamber works | 13d | 2026-09-26 A | 2027-01-05 | TAEXTSCC010005 | 15% | 11.05d | 2026-12-02 | 2026-12-17 | 6.46d | 0d | WATER TANKER [40 h]; EXCAVATOR [40 h]; CONCRET MIXER [40 h]; LABOR [80 h]; WATER TANKER DRIVER [40 h]; EXCAVATOR OPERATOR [40 h]; PLUMBER [80 h]; STEEL FIXER [80 h]; CARPENTER [80 h]; MASON [80 h]; CONCRET MIXER OPERATOR [40 h]; COST [68400] | 68,400 | 10,260 |
| TAEXTSCC010002 |  | Bedding Works | 2d | 2026-11-14 | 2026-11-16 | TAEXTSCC010001, TAEXPTCC010002 |  |  |  |  | 8.34d | 1.88d | DUMP TRUCK [16 h]; EXCAVATOR [16 h]; LABOR [32 h]; DUMP TRUCK DRIVER [16 h]; EXCAVATOR OPERATOR [16 h]; COST [12528.8] | 12,528.75 |  |
| TAEXTSCC010003 |  | Install Pipes & Fittings | 14d | 2026-11-18 | 2026-12-05 | TAEXTSCC010002, TAEXPTCC010003 |  |  |  |  | 6.46d | 0d | LABOR [224 h]; PLUMBER [224 h]; COST [76350] | 76,350 |  |
| TAEXTSCC010004 |  | Backfilling Works for Trench | 16d | 2026-12-05 | 2026-12-23 | TAEXTSCC010003, TAEXPTCC010004 |  |  |  |  | 6.46d | 0d | DUMP TRUCK [256 h]; WATER TANKER [128 h]; EXCAVATOR [128 h]; LABOR [128 h]; DUMP TRUCK DRIVER [256 h]; WATER TANKER DRIVER [128 h]; EXCAVATOR OPERATOR [128 h]; COMPACTOR [128 h]; COST [30500] | 30,500 |  |
| TAEXTSCC010007 |  | Inspection Test | 4d | 2027-03-23 | 2027-03-28 | TAEXTSCC010006, TAEXPTCC010008 |  |  |  |  | 111.96d | 0d | WATER TANKER [32 h]; LABOR [64 h]; WATER TANKER DRIVER [32 h]; PLUMBER [64 h]; COST [8630] | 8,630 |  |

| ID | WBS | Activity | Duration | Start | Finish | Predecessors | Complete | Remaining | Planned start | Planned finish | Total float | Free float | Resources | Cost | Actual cost |
| --- | --- | --- | --- | --- | --- | --- | --- | --- | --- | --- | --- | --- | --- | --- | --- |
|  | 5 | **Sewerage Networks** |  | 2026-04-07 | 2026-12-17 |  |  |  |  |  |  |  |  |  |  |
| TAEXSWCC010001 |  | Excavation works for Trench | 7d | 2026-04-07 A | 2026-04-14 A | TAEXSWCL100001 | 100% |  |  |  |  |  | DUMP TRUCK [192 h]; EXCAVATOR [96 h]; LABOR [48 h]; DUMP TRUCK DRIVER [192 h]; EXCAVATOR OPERATOR [96 h]; COST [41010] | 41,010 | 41,010 |
| TAEXSWCC010002 |  | Bedding Works | 1d | 2026-05-06 A | 2026-05-06 A | TAEXSWCC010001 | 100% |  |  |  |  |  | DUMP TRUCK [16 h]; EXCAVATOR [16 h]; LABOR [48 h]; DUMP TRUCK DRIVER [16 h]; EXCAVATOR OPERATOR [16 h]; COST [4110] | 4,110 | 4,110 |
| TAEXSWCC010003 |  | Install GRP Pipes & Fittings | 4d | 2026-05-07 A | 2026-05-11 A | TAEXSWCC010002 | 100% |  |  |  |  |  | EXCAVATOR [64 h]; LABOR [128 h]; EXCAVATOR OPERATOR [64 h]; PLUMBER [64 h]; COST [54285] | 54,285 | 54,285 |
| TAEXSWCC010004 |  | Backfilling Works for Trench | 8d | 2026-05-12 A | 2026-05-20 A | TAEXSWCC010003 | 100% |  |  |  |  |  | DUMP TRUCK [240 h]; WATER TANKER [60 h]; EXCAVATOR [120 h]; LABOR [60 h]; DUMP TRUCK DRIVER [240 h]; WATER TANKER DRIVER [60 h]; EXCAVATOR OPERATOR [120 h]; COMPACTOR [120 h]; COST [11319] | 11,319 | 11,319 |
| TAEXSWCC0100011 |  | Excavation works for Trench Part 01 | 5d | 2026-09-06 A | 2026-10-27 | TAEXSWCC010001, TAEXSWCL1000011 | 90% | 0.5d | 2026-09-19 | 2026-09-24 | 131.68d | 0d | DUMP TRUCK [192 h]; EXCAVATOR [96 h]; LABOR [48 h]; DUMP TRUCK DRIVER [192 h]; EXCAVATOR OPERATOR [96 h]; COST [27340] | 27,340 | 24,606 |
| TAEXSWCC010005 |  | Manhole Installation with backfilling | 14d | 2026-09-26 A | 2026-12-13 | TAEXSWCC010003, TAEXSWCC0100041 FF+10d, TAPQDVSW00021 | 60% | 5.6d | 2026-11-15 | 2026-12-01 | 186.5d | 0d | DUMP TRUCK [56 h]; EXCAVATOR [48 h]; LABOR [112 h]; DUMP TRUCK DRIVER [56 h]; EXCAVATOR OPERATOR [48 h]; PLUMBER [56 h]; MASON [32 h]; COST [80836.1] | 80,836.15 | 48,501.69 |
| TAEXSWCC0100021 |  | Bedding Works Part 01 | 2d | 2026-09-26 A | 2026-10-28 | TAEXSWCC010002, TAEXSWCC0100011 | 80% | 0.4d | 2026-10-06 | 2026-10-08 | 191.65d | 0d | DUMP TRUCK [16 h]; EXCAVATOR [16 h]; LABOR [48 h]; DUMP TRUCK DRIVER [16 h]; EXCAVATOR OPERATOR [16 h]; COST [2740] | 2,740 | 2,192 |
| TAEXSWCC0100031 |  | Install GRP Pipes & Fittings Part 01 | 5d | 2026-10-01 A | 2026-10-29 | TAEXSWCC010003, TAEXSWCC0100021 | 80% | 1d | 2026-10-11 | 2026-10-17 | 191.65d | 0d | EXCAVATOR [64 h]; LABOR [128 h]; EXCAVATOR OPERATOR [64 h]; PLUMBER [64 h]; COST [44415] | 44,415 | 35,532 |
| TAEXSWCC010006 |  | Leakage Test | 5d | 2026-10-01 A | 2026-12-17 | TAEXSWCC010005 | 15% | 4.25d | 2026-12-01 | 2026-12-07 | 186.5d | 12.34d | WATER TANKER [24 h]; LABOR [48 h]; WATER TANKER DRIVER [24 h]; PLUMBER [24 h]; COST [25694.5] | 25,694.45 | 3,854.17 |
| TAEXSWCC0100041 |  | Backfilling Works for Trench Part 01 | 8d | 2026-11-16 | 2026-11-25 | TAEXSWCC0100031 FS+15d, TAEXSWCC010004 |  |  |  |  | 191.65d | 5.15d | DUMP TRUCK [240 h]; WATER TANKER [60 h]; EXCAVATOR [120 h]; LABOR [60 h]; DUMP TRUCK DRIVER [240 h]; WATER TANKER DRIVER [60 h]; EXCAVATOR OPERATOR [120 h]; COMPACTOR [120 h]; COST [9261] | 9,261 |  |
|  | 6 | **Storm Networks** |  | 2025-12-31 | 2027-01-04 |  |  |  |  |  |  |  |  |  |  |
| TAEXSTCC010001 |  | Excavation works for Trench & Box Culvert | 15d | 2025-12-31 A | 2026-01-17 A | TAEXSTCU2100061 | 100% |  |  |  |  |  | DUMP TRUCK [320 h]; EXCAVATOR [160 h]; LABOR [80 h]; DUMP TRUCK DRIVER [320 h]; EXCAVATOR OPERATOR [160 h]; COST [223374] | 223,373.7 | 223,373.7 |
| TAEXSTCC010002 |  | Bedding Works | 2d | 2026-02-10 A | 2026-02-11 A | TAEXSTCC010001 | 100% |  |  |  |  |  | DUMP TRUCK [16 h]; EXCAVATOR [16 h]; LABOR [48 h]; DUMP TRUCK DRIVER [16 h]; EXCAVATOR OPERATOR [16 h]; COST [83105.8] | 83,105.83 | 83,105.83 |
| TAEXSTCC010003 |  | Install GRP Pipes & Fittings | 5d | 2026-03-28 A | 2026-04-01 A | TAEXSTCC010002 | 100% |  |  |  |  |  | EXCAVATOR [64 h]; LABOR [56 h]; EXCAVATOR OPERATOR [64 h]; PLUMBER [128 h]; COST [252054] | 252,054 | 252,054 |
| TAEXSTCC010004 |  | Backfilling Works for Trench & Box Culvert | 14d | 2026-04-01 A | 2026-04-16 A | TAEXSTCC010008 FF+15d, TAEXSTCC010003 | 100% |  |  |  |  |  | DUMP TRUCK [160 h]; WATER TANKER [60 h]; EXCAVATOR [80 h]; LABOR [160 h]; DUMP TRUCK DRIVER [160 h]; WATER TANKER DRIVER [60 h]; EXCAVATOR OPERATOR [80 h]; COMPACTOR [32 h]; COST [145935] | 145,935 | 145,935 |
| TAEXSTCC010008 |  | Install Box Culvert Part 1 | 2d | 2026-04-15 A | 2026-04-16 A | TAEXSTCL010003, TAPQDVST0005 | 100% |  |  |  |  |  | EXCAVATOR [160 h]; LABOR [448 h]; EXCAVATOR OPERATOR [160 h]; PLUMBER [320 h]; COST [303208] | 303,207.76 | 303,207.76 |
| TAEXSTCC010009 |  | Install Box Culvert Part 2 | 14d | 2026-04-15 A | 2026-04-30 A | TAEXSTCC010008 | 100% |  |  |  |  |  | EXCAVATOR [160 h]; LABOR [448 h]; EXCAVATOR OPERATOR [160 h]; PLUMBER [320 h]; COST [838810] | 838,809.87 | 838,809.87 |
| TAEXSTCC010005 |  | Manhole Installation with backfilling | 5d | 2026-04-21 A | 2026-04-26 A | TAEXSTCC010003 SS | 100% |  |  |  |  |  | DUMP TRUCK [110 h]; EXCAVATOR [112 h]; LABOR [224 h]; DUMP TRUCK DRIVER [110 h]; EXCAVATOR OPERATOR [112 h]; PLUMBER [112 h]; MASON [224 h]; COST [76657.5] | 76,657.5 | 76,657.5 |
| TAEXSTCC0100051 |  | Manhole Installation with backfilling Part 01 | 10d | 2026-06-16 A | 2026-12-17 | TAEXSTCC0100031, TAEXSTCC010005, TAEXSTCC0100041 FF, TAPQDVST00061 | 50% | 5d | 2026-11-07 | 2026-11-18 | 28.95d | 0d | DUMP TRUCK [110 h]; EXCAVATOR [112 h]; LABOR [224 h]; DUMP TRUCK DRIVER [110 h]; EXCAVATOR OPERATOR [112 h]; PLUMBER [112 h]; MASON [224 h]; COST [93692.5] | 93,692.5 | 46,846.25 |
| TAEXSTCC0100011 |  | Excavation works for Trench & Box Culvert Part 01 | 5d | 2026-08-10 A | 2026-08-16 A | TAEXSTCC010001 | 100% |  | 2026-08-10 | 2026-08-15 |  |  | DUMP TRUCK [320 h]; EXCAVATOR [160 h]; LABOR [80 h]; DUMP TRUCK DRIVER [320 h]; EXCAVATOR OPERATOR [160 h]; COST [2256.3] | 2,256.3 | 2,256.3 |
| TAEXSTCC0100021 |  | Bedding Works Part 01 | 1d | 2026-08-20 A | 2026-08-22 A | TAEXSTCC010002, TAEXSTCC0100011 | 100% |  | 2026-08-23 | 2026-08-23 |  |  | DUMP TRUCK [16 h]; EXCAVATOR [16 h]; LABOR [48 h]; DUMP TRUCK DRIVER [16 h]; EXCAVATOR OPERATOR [16 h]; COST [839.45] | 839.45 | 839.45 |
| TAEXSTCC0100031 |  | Install GRP Pipes & Fittings Part 01 | 3d | 2026-08-29 A | 2026-08-30 A | TAEXSTCC010003, TAEXSTCC0100021 | 100% |  | 2026-08-31 | 2026-09-02 |  |  | EXCAVATOR [64 h]; LABOR [56 h]; EXCAVATOR OPERATOR [64 h]; PLUMBER [128 h]; COST [13266] | 13,266 | 13,266 |
| TAEXSTCC0100091 |  | Install Box Culvert Part 2 Part 01 | 10d | 2026-10-10 A | 2026-12-20 | TAEXSTCC010009, TAEXSTCC0100031, TAPQDVST00051, TAEXSTCC0100051 | 85% | 1.5d | 2026-12-10 | 2026-12-22 | 28.95d | 0d | EXCAVATOR [160 h]; LABOR [448 h]; EXCAVATOR OPERATOR [160 h]; PLUMBER [320 h]; COST [44147.9] | 44,147.89 | 37,525.71 |
| TAEXSTCC010006 |  | Install Catch Basin with UPVC Pipes & Fittings | 12d | 2026-10-17 A | 2026-12-31 | TAEXSTCC0100051, TAEXSTCL0100031, TAEXSTCC0100091 | 10% | 10.8d | 2026-12-19 | 2027-01-02 | 28.95d | 0d | EXCAVATOR [96 h]; LABOR [96 h]; EXCAVATOR OPERATOR [96 h]; PLUMBER [96 h]; COST [85220] | 85,220 | 8,522 |
| TAEXSTCC0100041 |  | Backfilling Works for Trench & Box Culvert Part 01 | 8d | 2026-10-19 | 2026-10-27 | TAEXSTCC0100031 FS+15d, TAEXSTCC010004 |  |  |  |  | 72.49d | 43.54d | DUMP TRUCK [160 h]; WATER TANKER [60 h]; EXCAVATOR [80 h]; LABOR [160 h]; DUMP TRUCK DRIVER [160 h]; WATER TANKER DRIVER [60 h]; EXCAVATOR OPERATOR [80 h]; COMPACTOR [32 h]; COST [9315] | 9,315 |  |
| TAEXSTCC010007 |  | Leakage Test | 3d | 2026-12-31 | 2027-01-04 | TAEXSTCC010006, TAEXSTCC0100051, TAEXSTCC0100091, TAEXSWCC010006 |  |  |  |  | 182.16d | 69.75d | WATER TANKER [24 h]; LABOR [24 h]; WATER TANKER DRIVER [24 h]; PLUMBER [24 h]; COST [18450] | 18,450 |  |

| ID | WBS | Activity | Duration | Start | Finish | Predecessors | Total float | Free float | Resources | Cost |
| --- | --- | --- | --- | --- | --- | --- | --- | --- | --- | --- |
|  | 11 | **Upgrade Local 28** |  | 2026-03-14 | 2027-07-27 |  |  |  |  |  |
|  | 24 | **Road Works** |  | 2027-03-22 | 2027-05-20 |  |  |  |  |  |
| TAEXRDCU280002 |  | Precast Concret Kerps | 15d | 2027-03-22 | 2027-04-08 | TAEXRDCC010008 | 2.5d | 0d | LABOR [480 h]; COST [278805] | 278,805 |
| TAEXRDCU280001 |  | BWC Asphalt Wearing Course with RC | 1d | 2027-04-26 | 2027-04-27 | TAEXRDCU280002 FS+15d | 56.71d | 0d | ROLEER [16 h]; DUMP TRUCK [32 h]; MILLING MACHINE [8 h]; WHEEL ROLLER [16 h]; LABOR [40 h]; DUMP TRUCK DRIVER [32 h]; MILLING MACHINE OPERATOR [8 h]; WHEEL ROLLER OPERATOR [16 h]; ROLLER OPERATOR [16 h]; COST [311511] | 311,511 |
| TAEXRDCU280003 |  | Precast Interlock Works | 13d | 2027-04-27 | 2027-05-12 | TAEXRDCU280002, TAEXRDCU280001 | 56.71d | 0d | LABOR [840 h]; COST [274144] | 274,144 |
| TAEXRDCU280004 |  | Stone Paving works | 4d | 2027-05-12 | 2027-05-17 | TAEXRDCU280003 | 56.71d | 0d | DUMP TRUCK [32 h]; LABOR [160 h]; DUMP TRUCK DRIVER [32 h]; COST [38120] | 38,120 |
| TAEXRDCU280005 |  | Road Marking | 1d | 2027-05-17 | 2027-05-18 | TAEXRDCU280004 | 56.71d | 0d | LABOR [32 h]; COST [4100] | 4,100 |
| TAEXRDCU280006 |  | Traffic Sinage | 2d | 2027-05-18 | 2027-05-20 | TAEXRDCU280005 | 56.71d | 54.87d | EXCAVATOR [8 h]; LABOR [32 h]; EXCAVATOR OPERATOR [8 h]; COST [42000] | 42,000 |
|  | 15 | **Electrical Works** |  | 2027-02-02 | 2027-06-30 |  |  |  |  |  |
| TAEXELCU280001 |  | Trench Cut off | 10d | 2027-02-02 | 2027-02-14 | TAEXELCC010001 | -29.3d | 0d | DUMP TRUCK [160 h]; EXCAVATOR [80 h]; LABOR [40 h]; DUMP TRUCK DRIVER [160 h]; EXCAVATOR OPERATOR [80 h]; COST [10530] | 10,530 |
| TAEXELCU280002 |  | Drawpit and PVC Pipes Installation | 11d | 2027-04-14 | 2027-04-27 | TAEXELCU280001, TAPQDVEL0005 | 31.05d | 0d | ELECTRACIAN [80 h]; EXCAVATOR [40 h]; LABOR [80 h]; EXCAVATOR OPERATOR [40 h]; COST [5670] | 5,670 |
| TAEXELCU280003 |  | Road Crossing Ducts | 4d | 2027-04-27 | 2027-05-02 | TAEXELCU280002 | 34.05d | 0d | DUMP TRUCK [40 h]; EXCAVATOR [40 h]; DUMP TRUCK DRIVER [40 h]; EXCAVATOR OPERATOR [40 h]; COST [450] | 450 |
| TAEXELCU280004 |  | Trench Backfilling | 17d | 2027-05-02 | 2027-05-22 | TAEXELCU280003 | 34.05d | 0d | DUMP TRUCK [160 h]; WATER TANKER [144 h]; EXCAVATOR [160 h]; LABOR [160 h]; DUMP TRUCK DRIVER [160 h]; WATER TANKER DRIVER [144 h]; EXCAVATOR OPERATOR [160 h]; COMPACTOR [144 h]; COST [12020] | 12,020 |
| TAEXELCU280005 |  | Cables Pulling | 4d | 2027-05-22 | 2027-05-26 | TAEXELCU280002, TAEXELCU280003, TAEXELCU280004 | 34.05d | 26d | ELECTRACIAN [120 h]; LABOR [160 h]; COST [324000] | 324,000 |
| TAEXELCU280006 |  | Poles RC Foundation | 6d | 2027-05-23 | 2027-05-30 | TAEXELCU280002 FS+22d, TAPQDVEL0005 | 31.05d | 0d | EXCAVATOR [40 h]; LABOR [40 h]; EXCAVATOR OPERATOR [40 h]; COST [118210] | 118,210 |
| TAEXELCU280008 |  | Lighting Pole Installation with Luminares | 8d | 2027-05-30 | 2027-06-08 | TAEXELCU280006 | 39.05d | 0d | ELECTRACIAN [40 h]; CRANE [40 h]; CRANE OPERATOR [40 h]; COST [82000] | 82,000 |
| TAEXELCU280007 |  | Earthing cables | 4d | 2027-06-26 | 2027-06-30 | TAEXELCU280006, TAEXELCU280005, TAEXELCC010007 | 8.05d | 0d | ELECTRACIAN [80 h]; LABOR [40 h]; COST [54523] | 54,523 |
|  | 1 | **Telecommunication Works** |  | 2027-03-08 | 2027-06-26 |  |  |  |  |  |
| TAEXTCCU280001 |  | Trench Cut off | 10d | 2027-03-08 | 2027-03-20 | TAEXTCCC010001 | -17.61d | 0d | DUMP TRUCK [150 h]; EXCAVATOR [80 h]; LABOR [40 h]; DUMP TRUCK DRIVER [150 h]; EXCAVATOR OPERATOR [80 h]; COST [15230] | 15,230 |
| TAEXTCCU280002 |  | Drawpit and PVC Pipes Installation | 8d | 2027-05-27 | 2027-06-06 | TAEXTCCU280001, TAEXTCCC010002 | -20.27d | 0d | ELECTRACIAN [80 h]; EXCAVATOR [40 h]; LABOR [38 h]; EXCAVATOR OPERATOR [40 h]; COST [50235] | 50,235 |
| TAEXTCCU280003 |  | Road Crossing Ducts | 4d | 2027-06-06 | 2027-06-10 | TAEXTCCU280002 | 23.05d | 0d | DUMP TRUCK [40 h]; EXCAVATOR [40 h]; DUMP TRUCK DRIVER [40 h]; EXCAVATOR OPERATOR [40 h]; COST [12500] | 12,500 |
| TAEXTCCU280004 |  | Trench Backfilling | 13d | 2027-06-10 | 2027-06-26 | TAEXTCCU280003 | 23.05d | 1.32d | DUMP TRUCK [48 h]; WATER TANKER [32 h]; EXCAVATOR [32 h]; LABOR [48 h]; DUMP TRUCK DRIVER [48 h]; WATER TANKER DRIVER [32 h]; EXCAVATOR OPERATOR [32 h]; COMPACTOR [24 h]; COST [31250] | 31,250 |
|  | 2 | **CCTV Works** |  | 2026-12-26 | 2027-07-27 |  |  |  |  |  |
| TAEXCCCU280001 |  | Pipe Installation with manhole | 12d | 2026-12-26 | 2027-01-09 | TAEXCCCC010001 | -15.55d | 0d | ELECTRACIAN [96 h]; LABOR [192 h]; COST [25094] | 25,094 |
| TAEXCCCU280002 |  | CCTV Swiches Lighting panels Installation | 14d | 2027-06-15 | 2027-07-01 | TAEXCCCU280001, TAEXCCCC010002 | -15.55d | 0d | ELECTRACIAN [330 h]; EXCAVATOR [40 h]; LABOR [330 h]; EXCAVATOR OPERATOR [40 h]; COST [3276] | 3,276 |
| TAEXCCCU280003 |  | Cable laying and connected with Panels | 10d | 2027-07-01 | 2027-07-13 | TAEXCCCU280002 | 13.45d | 0d | ELECTRACIAN [160 h]; LABOR [320 h]; COST [25974] | 25,974 |
| TAEXCCCU280004 |  | Pole Installation with IP Outdoor CCTV POE Camera | 12d | 2027-07-13 | 2027-07-27 | TAEXCCCU280003 | 13.45d | 29.72d | ELECTRACIAN [96 h]; EXCAVATOR [60 h]; LABOR [96 h]; EXCAVATOR OPERATOR [60 h]; COST [3779] | 3,779 |

| ID | WBS | Activity | Duration | Start | Finish | Predecessors | Complete | Remaining | Planned start | Planned finish | Total float | Free float | Resources | Cost | Actual cost |
| --- | --- | --- | --- | --- | --- | --- | --- | --- | --- | --- | --- | --- | --- | --- | --- |
|  | 3 | **Potable Networks** |  | 2026-08-23 | 2027-03-22 |  |  |  |  |  |  |  |  |  |  |
| TAEXPTCU280001 |  | Excavation works for Trench | 27d | 2026-08-23 A | 2026-11-09 | TAEXPTCL100001 | 94% | 1.62d | 2026-09-21 | 2026-10-22 | 62.04d | 0d | DUMP TRUCK [110 h]; EXCAVATOR [55 h]; LABOR [20 h]; DUMP TRUCK DRIVER [110 h]; EXCAVATOR OPERATOR [55 h]; COST [52100] | 52,100 | 48,974 |
| TAEXPTCU280002 |  | Bedding Works | 2d | 2026-09-06 A | 2026-11-09 | TAEXPTCU280001 | 94% | 0.12d | 2026-10-01 | 2026-10-04 | 186.79d | 0d | DUMP TRUCK [16 h]; EXCAVATOR [16 h]; LABOR [32 h]; DUMP TRUCK DRIVER [16 h]; EXCAVATOR OPERATOR [16 h]; COST [7050] | 7,050 | 6,627 |
| TAEXPTCU280003 |  | Install Pipes & Fittings | 8d | 2026-09-06 A | 2026-11-10 | TAEXPTCU280002, TAEXPTCL100003 | 94% | 0.48d | 2026-10-04 | 2026-10-13 | 186.79d | 0d | LABOR [128 h]; PLUMBER [64 h]; COST [78112] | 78,112 | 73,425.28 |
| TAEXPTCU280004 |  | Backfilling Works for Trench | 14d | 2026-11-10 | 2026-11-26 | TAEXPTCU280003 |  |  |  |  | 186.79d | 0d | DUMP TRUCK [224 h]; WATER TANKER [128 h]; EXCAVATOR [112 h]; LABOR [110 h]; DUMP TRUCK DRIVER [224 h]; WATER TANKER DRIVER [128 h]; EXCAVATOR OPERATOR [112 h]; COMPACTOR [108 h]; COST [24250] | 24,250 |  |
| TAEXPTCU280005 |  | Install Valves with fittings | 4d | 2026-11-22 | 2026-11-26 | TAEXPTCU280004 FF, TAPQDVPT00021 |  |  |  |  | 186.79d | 0d | LABOR [64 h]; PLUMBER [64 h]; COST [9600] | 9,600 |  |
| TAEXPTCU280006 |  | Install fire hydrent | 6d | 2026-11-26 | 2026-12-03 | TAEXPTCU280003, TAEXPTCU280005 |  |  |  |  | 186.79d | 74.38d | LABOR [96 h]; PLUMBER [48 h]; COST [24000] | 24,000 |  |
| TAEXPTCU280007 |  | Valve Chamber works | 15d | 2027-02-28 | 2027-03-17 | TAEXPTCU280006, TAEXPTCL100007 |  |  |  |  | 112.41d | 0d | WATER TANKER [30 h]; EXCAVATOR [32 h]; CONCRET MIXER [30 h]; LABOR [60 h]; WATER TANKER DRIVER [30 h]; EXCAVATOR OPERATOR [32 h]; PLUMBER [60 h]; STEEL FIXER [60 h]; CARPENTER [60 h]; MASON [60 h]; CONCRET MIXER OPERATOR [30 h]; COST [32500] | 32,500 |  |
| TAEXPTCU280008 |  | Inspection Test | 4d | 2027-03-17 | 2027-03-22 | TAEXPTCU280007 |  |  |  |  | 112.41d | 0d | WATER TANKER [32 h]; LABOR [32 h]; WATER TANKER DRIVER [32 h]; PLUMBER [32 h]; COST [4005] | 4,005 |  |
|  | 4 | **TSE Networks** |  | 2026-10-10 | 2027-03-27 |  |  |  |  |  |  |  |  |  |  |
| TAEXTSCU280005 |  | Install Valves with fittings | 4d | 2026-10-10 A | 2027-01-13 | TAEXTSCU280004 FF | 15% | 3.4d | 2027-01-02 | 2027-01-06 | 158.02d | 0d | LABOR [64 h]; PLUMBER [64 h]; COST [6320] | 6,320 | 948 |
| TAEXTSCU280006 |  | Valve Chamber works | 15d | 2026-10-10 A | 2027-01-27 | TAEXTSCU280005 | 15% | 12.75d | 2027-01-06 | 2027-01-24 | 158.02d | 45.61d | WATER TANKER [60 h]; EXCAVATOR [60 h]; CONCRET MIXER [60 h]; LABOR [120 h]; WATER TANKER DRIVER [60 h]; EXCAVATOR OPERATOR [60 h]; PLUMBER [60 h]; STEEL FIXER [60 h]; CARPENTER [60 h]; MASON [60 h]; CONCRET MIXER OPERATOR [60 h]; COST [38620] | 38,620 | 5,793 |
| TAEXTSCU280001 |  | Excavation works for Trench | 22d | 2026-11-21 | 2026-12-16 | TAEXTSCL100001 |  |  |  |  | 51.42d | 0d | DUMP TRUCK [112 h]; EXCAVATOR [56 h]; LABOR [30 h]; DUMP TRUCK DRIVER [112 h]; EXCAVATOR OPERATOR [56 h]; COST [65200] | 65,200 |  |
| TAEXTSCU280002 |  | Bedding Works | 2d | 2026-12-16 | 2026-12-19 | TAEXTSCU280001, TAEXPTCU280002 |  |  |  |  | 158.02d | 0d | DUMP TRUCK [16 h]; EXCAVATOR [16 h]; LABOR [32 h]; DUMP TRUCK DRIVER [16 h]; EXCAVATOR OPERATOR [16 h]; COST [4200] | 4,200 |  |
| TAEXTSCU280003 |  | Install Pipes & Fittings | 8d | 2026-12-19 | 2026-12-28 | TAEXTSCU280002, TAEXTSCL100003 |  |  |  |  | 158.02d | 0d | LABOR [128 h]; PLUMBER [128 h]; COST [72300] | 72,300 |  |
| TAEXTSCU280004 |  | Backfilling Works for Trench | 14d | 2026-12-28 | 2027-01-13 | TAEXTSCU280003 |  |  |  |  | 158.02d | 0d | DUMP TRUCK [200 h]; WATER TANKER [55 h]; EXCAVATOR [112 h]; LABOR [110 h]; DUMP TRUCK DRIVER [200 h]; WATER TANKER DRIVER [55 h]; EXCAVATOR OPERATOR [112 h]; COMPACTOR [80 h]; COST [24500] | 24,500 |  |
| TAEXTSCU280007 |  | Inspection Test | 4d | 2027-03-22 | 2027-03-27 | TAEXTSCU280006, TAEXPTCU280008 |  |  |  |  | 112.41d | 0d | WATER TANKER [32 h]; LABOR [64 h]; WATER TANKER DRIVER [32 h]; PLUMBER [64 h]; COST [3850] | 3,850 |  |
|  | 19 | **Storm Networks** |  | 2026-03-14 | 2027-03-27 |  |  |  |  |  |  |  |  |  |  |
| TAEXSTCU2100061 |  | Excavation works for Trench | 7d | 2026-03-14 A | 2026-03-21 A | TAEXSTCL090001 | 100% |  |  |  |  |  | DUMP TRUCK [160 h]; EXCAVATOR [80 h]; LABOR [40 h]; DUMP TRUCK DRIVER [160 h]; EXCAVATOR OPERATOR [80 h]; COST [90255.4] | 90,255.41 | 90,255.41 |
| TAEXSTCU2100071 |  | Bedding Works | 2d | 2026-04-09 A | 2026-04-11 A | TAEXSTCU2100061 | 100% |  |  |  |  |  | DUMP TRUCK [16 h]; EXCAVATOR [16 h]; LABOR [48 h]; DUMP TRUCK DRIVER [16 h]; EXCAVATOR OPERATOR [16 h]; COST [82266.4] | 82,266.37 | 82,266.37 |
| TAEXSTCU2100081 |  | Install GRP Pipes & Fittings | 7d | 2026-04-11 A | 2026-04-18 A | TAEXSTCU2100071 | 100% |  |  |  |  |  | EXCAVATOR [64 h]; LABOR [64 h]; EXCAVATOR OPERATOR [64 h]; PLUMBER [124 h]; COST [188698] | 188,698.5 | 188,698.5 |
| TAEXSTCU2100091 |  | Backfilling Works for Trench | 10d | 2026-04-16 A | 2026-04-27 A | TAEXSTCU2100081 | 100% |  |  |  |  |  | DUMP TRUCK [192 h]; WATER TANKER [48 h]; EXCAVATOR [96 h]; LABOR [48 h]; DUMP TRUCK DRIVER [192 h]; WATER TANKER DRIVER [48 h]; EXCAVATOR OPERATOR [96 h]; COMPACTOR [96 h]; COST [76755] | 76,755 | 76,755 |
| TAEXSTCU2100101 |  | Manhole Installation with backfilling | 10d | 2026-04-19 A | 2026-04-29 A | TAEXSTCU2100081 | 100% |  |  |  |  |  | DUMP TRUCK [120 h]; EXCAVATOR [60 h]; LABOR [60 h]; DUMP TRUCK DRIVER [120 h]; EXCAVATOR OPERATOR [60 h]; PLUMBER [60 h]; MASON [60 h]; COST [97758] | 97,758 | 97,758 |
| TAEXSTCU280007 |  | Leakage Test | 3d | 2026-08-01 A | 2027-03-27 | TAEXSTCU21001011, TAEXSTCU280006, TAEXTSCU280007, TAEXTSCU280007 FF | 95% | 0.15d | 2027-04-26 | 2027-04-29 | 112.41d | 0d | WATER TANKER [24 h]; LABOR [24 h]; WATER TANKER DRIVER [24 h]; PLUMBER [24 h]; COST [10500] | 10,500 | 9,975 |
| TAEXSTCU21000611 |  | Excavation works for Trench Part 01 | 5d | 2026-09-05 A | 2026-09-06 A | TAEXSTCL060001 | 100% |  | 2026-09-14 | 2026-09-20 |  |  | DUMP TRUCK [160 h]; EXCAVATOR [80 h]; LABOR [40 h]; DUMP TRUCK DRIVER [160 h]; EXCAVATOR OPERATOR [80 h]; COST [1841.95] | 1,841.95 | 1,841.95 |
| TAEXSTCU21000711 |  | Bedding Works Part 01 | 1d | 2026-09-10 A | 2026-09-13 A | TAEXSTCU2100071, TAEXSTCU21000611 | 100% |  | 2026-09-20 | 2026-09-21 |  |  | DUMP TRUCK [16 h]; EXCAVATOR [16 h]; LABOR [48 h]; DUMP TRUCK DRIVER [16 h]; EXCAVATOR OPERATOR [16 h]; COST [1678.91] | 1,678.91 | 1,678.91 |
| TAEXSTCU21000811 |  | Install GRP Pipes & Fittings Part 01 | 5d | 2026-09-10 A | 2026-09-13 A | TAEXSTCU2100081, TAEXSTCU21000711 | 100% |  | 2026-09-21 | 2026-09-27 |  |  | EXCAVATOR [64 h]; LABOR [64 h]; EXCAVATOR OPERATOR [64 h]; PLUMBER [124 h]; COST [9931.5] | 9,931.5 | 9,931.5 |
| TAEXSTCU21000911 |  | Backfilling Works for Trench Part 01 | 7d | 2026-10-08 A | 2026-10-10 A | TAEXSTCU21000811 FF+15d, TAEXSTCU2100091 | 100% |  | 2026-10-12 | 2026-10-19 |  |  | DUMP TRUCK [192 h]; WATER TANKER [48 h]; EXCAVATOR [96 h]; LABOR [48 h]; DUMP TRUCK DRIVER [192 h]; WATER TANKER DRIVER [48 h]; EXCAVATOR OPERATOR [96 h]; COMPACTOR [96 h]; COST [13545] | 13,545 | 13,545 |
| TAEXSTCU21001011 |  | Manhole Installation with backfilling Part 01 | 5d | 2026-12-12 | 2026-12-17 | TAEXSTCU21000911 FS+10d, TAEXSTCU2100101, TAPQDVSW00021, TAPQDVST00061 |  |  |  |  | 2.5d | 0d | DUMP TRUCK [120 h]; EXCAVATOR [60 h]; LABOR [60 h]; DUMP TRUCK DRIVER [120 h]; EXCAVATOR OPERATOR [60 h]; PLUMBER [60 h]; MASON [60 h]; COST [10862] | 10,862 |  |
| TAEXSTCU280006 |  | Install Catch Basin with UPVC Pipes & Fittings | 12d | 2026-12-17 | 2026-12-31 | TAEXSTCU21001011 |  |  |  |  | 2.5d | 0d | EXCAVATOR [48 h]; LABOR [96 h]; EXCAVATOR OPERATOR [48 h]; PLUMBER [96 h]; COST [285220] | 285,220 |  |

| ID | WBS | Activity | Duration | Start | Finish | Predecessors | Complete | Remaining | Planned start | Planned finish | Total float | Free float | Resources | Cost | Actual cost |
| --- | --- | --- | --- | --- | --- | --- | --- | --- | --- | --- | --- | --- | --- | --- | --- |
|  | 5 | **Local Road 02** |  | 2026-01-04 | 2027-08-15 |  |  |  |  |  |  |  |  |  |  |
|  | 2 | **Road Works** |  | 2026-01-04 | 2027-07-24 |  |  |  |  |  |  |  |  |  |  |
| TAEXRDC L020001 |  | Road Excavation and Disposal | 52d | 2026-01-04 A | 2026-03-05 A | TAEXRDCL080001 | 100% |  | 2026-01-04 | 2026-03-04 |  |  | DUMP TRUCK [320 h]; EXCAVATOR [160 h]; LABOR [80 h]; DUMP TRUCK DRIVER [320 h]; EXCAVATOR OPERATOR [160 h]; COST [116390] | 116,390 | 116,390 |
| TAEXRDC L020002 |  | Backfilling Works for Road | 40d | 2026-01-18 A | 2026-03-04 A | TAEXRDC L020001 | 100% |  |  |  |  |  | ROLEER [32 h]; DUMP TRUCK [112 h]; WATER TANKER [32 h]; EXCAVATOR [56 h]; GRADER [56 h]; LABOR [32 h]; GRADER OPERATOR [56 h]; DUMP TRUCK DRIVER [112 h]; WATER TANKER DRIVER [32 h]; EXCAVATOR OPERATOR [56 h]; ROLLER OPERATOR [32 h]; COST [197305] | 197,305 | 197,305 |
| TAEXRDC L020003 |  | Subgrade Works | 54d | 2026-02-08 A | 2026-04-11 A | TAEXRDC L020002 | 100% |  |  |  |  |  | ROLEER [56 h]; DUMP TRUCK [110 h]; WATER TANKER [56 h]; EXCAVATOR [56 h]; GRADER [56 h]; LABOR [56 h]; GRADER OPERATOR [56 h]; DUMP TRUCK DRIVER [110 h]; WATER TANKER DRIVER [56 h]; EXCAVATOR OPERATOR [56 h]; ROLLER OPERATOR [56 h]; COST [136079] | 136,079.16 | 136,079.16 |
| TAEXRDC L020004 |  | ABC aggregate Base Course Works | 8d | 2026-06-21 A | 2026-08-09 A | TAEXRDC L020003, TAEXSTCL0200061, TAPQDVRD00011, TAEXPTCL0200071 | 100% |  | 2026-11-22 | 2026-12-01 |  |  | ROLEER [64 h]; DUMP TRUCK [120 h]; WATER TANKER [64 h]; EXCAVATOR [64 h]; GRADER [64 h]; LABOR [64 h]; GRADER OPERATOR [64 h]; DUMP TRUCK DRIVER [240 h]; WATER TANKER DRIVER [64 h]; EXCAVATOR OPERATOR [64 h]; ROLLER OPERATOR [64 h]; COST [35786] | 35,786 | 35,786 |
| TAEXRDC L020005 |  | MBC1 layer | 1d | 2026-07-05 A | 2026-08-09 A | TAEXRDC L020004 | 100% |  | 2026-09-30 | 2026-10-01 |  |  | MC1 sprinker [8 h]; MC DRIVER [8 h]; COST [5000] | 5,000 | 5,000 |
| TAEXRDC L020006 |  | BBC Base Course | 3d | 2026-07-08 A | 2026-08-16 A | TAEXRDC L020005 | 100% |  | 2026-10-01 | 2026-10-05 |  |  | ROLEER [48 h]; DUMP TRUCK [72 h]; MILLING MACHINE [24 h]; WHEEL ROLLER [48 h]; LABOR [100 h]; DUMP TRUCK DRIVER [72 h]; MILLING MACHINE OPERATOR [24 h]; WHEEL ROLLER OPERATOR [48 h]; ROLLER OPERATOR [48 h]; COST [406417] | 406,417 | 406,417 |
| TAEXRDC L020008 |  | Precast Concret Kerps | 9d | 2026-09-26 A | 2027-04-15 | TAEXRDC L020006, TAEXRDCU280002 | 31% | 6.21d | 2027-03-21 | 2027-03-31 | 2.5d | 0d | LABOR [580 h]; COST [78805] | 78,805 | 24,429.55 |
| TAEXRDC L020007 |  | BWC Asphalt Wearing Course with RC | 1d | 2027-05-29 | 2027-05-30 | TAEXRDC L020006, TAEXRDC L020008, TAEXRDCC030007 |  |  |  |  | 26.9d | 0d | ROLEER [16 h]; DUMP TRUCK [32 h]; MILLING MACHINE [8 h]; WHEEL ROLLER [16 h]; LABOR [40 h]; DUMP TRUCK DRIVER [32 h]; MILLING MACHINE OPERATOR [8 h]; WHEEL ROLLER OPERATOR [16 h]; ROLLER OPERATOR [16 h]; COST [111511] | 111,511 |  |
| TAEXRDC L020009 |  | Precast Interlock Works | 9d | 2027-05-30 | 2027-06-09 | TAEXRDC L020008, TAEXRDC L020007 |  |  |  |  | 30.9d | 0d | LABOR [840 h]; COST [175671] | 175,671 |  |
| TAEXRDC L020010 |  | Stone Paving works | 4d | 2027-06-09 | 2027-06-14 | TAEXRDC L020009 |  |  |  |  | 30.9d | 29.06d | DUMP TRUCK [32 h]; LABOR [160 h]; DUMP TRUCK DRIVER [32 h]; COST [135000] | 135,000 |  |
| TAEXRDC L020011 |  | Road Marking | 3d | 2027-07-18 | 2027-07-21 | TAEXRDC L020010, TAPQDVRD00081 |  |  |  |  | 1.84d | 0d | LABOR [32 h]; COST [4800] | 4,800 |  |
| TAEXRDC L020012 |  | Traffic Sinage | 2d | 2027-07-21 | 2027-07-24 | TAEXRDC L020011 |  |  |  |  | 1.84d | 0d | EXCAVATOR [8 h]; LABOR [32 h]; EXCAVATOR OPERATOR [8 h]; COST [42000] | 42,000 |  |
|  | 1 | **Electrical Works** |  | 2026-06-11 | 2027-07-03 |  |  |  |  |  |  |  |  |  |  |
| TAEXELCL020001 |  | Trench Cut off | 9d | 2026-06-11 A | 2027-02-20 | TAEXELCU280001 | 40% | 5.4d | 2026-11-24 | 2026-12-05 | -29.3d | 0d | DUMP TRUCK [140 h]; EXCAVATOR [72 h]; LABOR [40 h]; DUMP TRUCK DRIVER [140 h]; EXCAVATOR OPERATOR [72 h]; COST [26450.2] | 26,450.25 | 10,580.1 |
| TAEXELCL020002 |  | Drawpit and PVC Pipes Installation | 8d | 2026-06-13 A | 2026-06-21 A | TAEXELCL020001, TAPQDVEL0005 | 100% |  | 2027-03-16 | 2027-03-25 |  |  | ELECTRACIAN [80 h]; EXCAVATOR [40 h]; LABOR [80 h]; EXCAVATOR OPERATOR [40 h]; COST [3587] | 3,587 | 3,587 |
| TAEXELCL020003 |  | Road Crossing Ducts | 2d | 2026-06-13 A | 2026-06-21 A | TAEXELCL020002 | 100% |  | 2027-03-25 | 2027-03-28 |  |  | DUMP TRUCK [40 h]; EXCAVATOR [40 h]; DUMP TRUCK DRIVER [40 h]; EXCAVATOR OPERATOR [40 h]; COST [260] | 260 | 260 |
| TAEXELCL020004 |  | Trench Backfilling | 9d | 2026-06-16 A | 2027-04-22 | TAEXELCL020003 | 22% | 7.02d | 2027-03-28 | 2027-04-07 | 65.41d | 0d | DUMP TRUCK [160 h]; WATER TANKER [144 h]; EXCAVATOR [160 h]; LABOR [160 h]; DUMP TRUCK DRIVER [160 h]; WATER TANKER DRIVER [144 h]; EXCAVATOR OPERATOR [160 h]; COMPACTOR [144 h]; COST [9583] | 9,583 | 2,108.26 |
| TAEXELCL020005 |  | Cables Pulling | 3d | 2026-09-20 A | 2027-04-25 | TAEXELCL020002, TAEXELCL020003, TAEXELCL020004 | 46% | 1.62d | 2027-04-03 | 2027-04-06 | 65.41d | 57.36d | ELECTRACIAN [120 h]; LABOR [160 h]; COST [168000] | 168,000 | 77,280 |
| TAEXELCL020006 |  | Poles RC Foundation | 3d | 2027-04-14 | 2027-04-18 | TAEXELCL020002, TAPQDVEL0005 |  |  |  |  | 71.05d | 0d | EXCAVATOR [40 h]; LABOR [40 h]; EXCAVATOR OPERATOR [40 h]; COST [59510] | 59,510 |  |
| TAEXELCL020008 |  | Lighting Pole Installation with Luminares | 4d | 2027-04-18 | 2027-04-22 | TAEXELCL020006 |  |  |  |  | 79.05d | 40d | ELECTRACIAN [40 h]; CRANE [40 h]; CRANE OPERATOR [40 h]; COST [91500] | 91,500 |  |
| TAEXELCL020007 |  | Earthing cables | 2d | 2027-06-30 | 2027-07-03 | TAEXELCL020006, TAEXELCL020005, TAEXELCU280007 |  |  |  |  | 8.05d | 0d | ELECTRACIAN [80 h]; LABOR [40 h]; COST [2320] | 2,320 |  |
|  | 5 | **Telecommunication Works** |  | 2026-06-11 | 2027-06-16 |  |  |  |  |  |  |  |  |  |  |
| TAEXTCCL020001 |  | Trench Cut off | 6d | 2026-06-11 A | 2027-03-27 | TAEXTCCU280001 | 12% | 5.28d | 2027-01-24 | 2027-01-30 | -17.61d | 0d | DUMP TRUCK [100 h]; EXCAVATOR [48 h]; LABOR [24 h]; DUMP TRUCK DRIVER [100 h]; EXCAVATOR OPERATOR [48 h]; COST [9500] | 9,500 | 1,140 |
| TAEXTCCL020002 |  | Drawpit and PVC Pipes Installation | 3d | 2026-06-13 A | 2026-06-23 A | TAEXTCCL020001, TAEXTCCU280002 | 100% |  | 2027-05-12 | 2027-05-16 |  |  | ELECTRACIAN [80 h]; EXCAVATOR [24 h]; LABOR [16 h]; EXCAVATOR OPERATOR [24 h]; COST [60250] | 60,250 | 60,250 |
| TAEXTCCL020003 |  | Road Crossing Ducts | 2d | 2026-06-13 A | 2026-06-23 A | TAEXTCCL020002 | 100% |  | 2027-05-16 | 2027-05-18 |  |  | DUMP TRUCK [32 h]; EXCAVATOR [16 h]; DUMP TRUCK DRIVER [32 h]; EXCAVATOR OPERATOR [16 h]; COST [8600] | 8,600 | 8,600 |
| TAEXTCCL020004 |  | Trench Backfilling | 9d | 2027-06-06 | 2027-06-16 | TAEXTCCL020003 |  |  |  |  | 31.05d | 9.32d | DUMP TRUCK [72 h]; WATER TANKER [56 h]; EXCAVATOR [72 h]; LABOR [110 h]; DUMP TRUCK DRIVER [72 h]; WATER TANKER DRIVER [56 h]; EXCAVATOR OPERATOR [72 h]; COMPACTOR [40 h]; COST [25005] | 25,005 |  |

| ID | WBS | Activity | Duration | Start | Finish | Predecessors | Complete | Planned start | Planned finish | Total float | Free float | Resources | Cost | Actual cost |
| --- | --- | --- | --- | --- | --- | --- | --- | --- | --- | --- | --- | --- | --- | --- |
|  | 3 | **CCTV Works** |  | 2027-01-09 | 2027-08-15 |  |  |  |  |  |  |  |  |  |
| TAEXCCCL020001 |  | Pipe Installation with manhole | 10d | 2027-01-09 | 2027-01-20 | TAEXCCCU280001 |  |  |  | -15.55d | 0d | ELECTRACIAN [96 h]; LABOR [192 h]; COST [25094] | 25,094 |  |
| TAEXCCCL020002 |  | CCTV Swiches Lighting panels Installation | 13d | 2027-07-01 | 2027-07-17 | TAEXCCCL020001, TAEXCCCU280002 |  |  |  | -15.55d | 0d | ELECTRACIAN [330 h]; EXCAVATOR [40 h]; LABOR [330 h]; EXCAVATOR OPERATOR [40 h]; COST [2578] | 2,578 |  |
| TAEXCCCL020003 |  | Cable laying and connected with Panels | 10d | 2027-07-17 | 2027-07-28 | TAEXCCCL020002 |  |  |  | -2.55d | 0d | ELECTRACIAN [160 h]; LABOR [320 h]; COST [18176] | 18,176 |  |
| TAEXCCCL020004 |  | Pole Installation with IP Outdoor CCTV POE Camera | 15d | 2027-07-28 | 2027-08-15 | TAEXCCCL020003 |  |  |  | -2.55d | 13.72d | ELECTRACIAN [120 h]; EXCAVATOR [70 h]; LABOR [120 h]; EXCAVATOR OPERATOR [70 h]; COST [4716] | 4,716 |  |
|  | 4 | **Potable Networks** |  | 2026-05-12 | 2026-06-25 |  |  |  |  |  |  |  |  |  |
| TAEXPTCL020001 |  | Excavation works for Trench | 4d | 2026-05-12 A | 2026-05-16 A | TAPQDVPT0001 | 100% |  |  |  |  | DUMP TRUCK [115 h]; EXCAVATOR [50 h]; LABOR [10 h]; DUMP TRUCK DRIVER [115 h]; EXCAVATOR OPERATOR [50 h]; COST [65059.6] | 65,059.62 | 65,059.62 |
| TAEXPTCL020002 |  | Bedding Works | 3d | 2026-05-17 A | 2026-05-19 A | TAEXPTCL020001 | 100% |  |  |  |  | DUMP TRUCK [16 h]; EXCAVATOR [16 h]; LABOR [32 h]; DUMP TRUCK DRIVER [16 h]; EXCAVATOR OPERATOR [16 h]; COST [22735.9] | 22,735.92 | 22,735.92 |
| TAEXPTCL020003 |  | Install Pipes & Fittings | 2d | 2026-05-19 A | 2026-05-20 A | TAEXPTCL020002 | 100% |  |  |  |  | LABOR [128 h]; PLUMBER [64 h]; COST [78112] | 78,112 | 78,112 |
| TAEXPTCL020004 |  | Backfilling Works for Trench | 4d | 2026-05-20 A | 2026-05-24 A | TAEXPTCL020003 | 100% |  |  |  |  | DUMP TRUCK [224 h]; WATER TANKER [128 h]; EXCAVATOR [112 h]; LABOR [110 h]; DUMP TRUCK DRIVER [224 h]; WATER TANKER DRIVER [128 h]; EXCAVATOR OPERATOR [112 h]; COMPACTOR [108 h]; COST [24250] | 24,250 | 24,250 |
| TAEXPTCL020005 |  | Install Valves with fittings | 3d | 2026-05-23 A | 2026-05-25 A | TAEXPTCL020004 FF, TAEXPTCC030005 | 100% |  |  |  |  | LABOR [64 h]; PLUMBER [64 h]; COST [9120] | 9,120 | 9,120 |
| TAEXPTCL020007 |  | Valve Chamber works | 10d | 2026-05-23 A | 2026-06-02 A | TAEXPTCL020006 | 100% |  |  |  |  | WATER TANKER [56 h]; EXCAVATOR [56 h]; CONCRET MIXER [64 h]; LABOR [128 h]; WATER TANKER DRIVER [56 h]; EXCAVATOR OPERATOR [56 h]; PLUMBER [56 h]; STEEL FIXER [56 h]; CARPENTER [56 h]; MASON [56 h]; CONCRET MIXER OPERATOR [64 h]; COST [22687.5] | 22,687.5 | 22,687.5 |
| TAEXPTCL020006 |  | Install fire hydrent | 3d | 2026-05-31 A | 2026-06-02 A | TAEXPTCL020003 | 100% |  |  |  |  | LABOR [96 h]; PLUMBER [48 h]; COST [12000] | 12,000 | 12,000 |
| TAEXPTCL0200051 |  | Install Valves with fittings Part 01 | 1d | 2026-06-06 A | 2026-06-09 A | TAEXPTCL020005, TAPQDVPT00021 | 100% | 2026-09-30 | 2026-10-01 |  |  | LABOR [64 h]; PLUMBER [64 h]; COST [480] | 480 | 480 |
| TAEXPTCL0200061 |  | Install fire hydrent Part 01 | 3d | 2026-06-06 A | 2026-06-09 A | TAEXPTCL020006, TAEXPTCL0200051, TAPQDVPT00031 | 100% | 2026-11-14 | 2026-11-17 |  |  | LABOR [96 h]; PLUMBER [48 h]; COST [12000] | 12,000 | 12,000 |
| TAEXPTCL0200071 |  | Valve Chamber works Part 01 | 4d | 2026-06-06 A | 2026-06-20 A | TAEXPTCL0200061, TAEXPTCL020007 | 100% | 2026-11-14 | 2026-11-18 |  |  | WATER TANKER [56 h]; EXCAVATOR [56 h]; CONCRET MIXER [64 h]; LABOR [128 h]; WATER TANKER DRIVER [56 h]; EXCAVATOR OPERATOR [56 h]; PLUMBER [56 h]; STEEL FIXER [56 h]; CARPENTER [56 h]; MASON [56 h]; CONCRET MIXER OPERATOR [64 h]; COST [7562.5] | 7,562.5 | 7,562.5 |
| TAEXPTCL020008 |  | Inspection Test | 4d | 2026-06-25 A | 2026-06-25 A | TAEXPTCL0200071, TAEXSTCU210007 | 100% | 2027-03-23 | 2027-03-28 |  |  | WATER TANKER [32 h]; LABOR [32 h]; WATER TANKER DRIVER [32 h]; PLUMBER [32 h]; COST [4005] | 4,005 | 4,005 |
|  | 6 | **TSE Networks** |  | 2026-04-12 | 2026-06-28 |  |  |  |  |  |  |  |  |  |
| TAEXTSCL020001 |  | Excavation works for Trench | 30d | 2026-04-12 A | 2026-05-16 A | TAEXTSCC030001 | 100% |  |  |  |  | DUMP TRUCK [112 h]; EXCAVATOR [56 h]; LABOR [30 h]; DUMP TRUCK DRIVER [112 h]; EXCAVATOR OPERATOR [56 h]; COST [34019.3] | 34,019.34 | 34,019.34 |
| TAEXTSCL020002 |  | Bedding Works | 25d | 2026-05-05 A | 2026-06-02 A | TAEXTSCL020001 | 100% |  |  |  |  | DUMP TRUCK [16 h]; EXCAVATOR [16 h]; LABOR [32 h]; DUMP TRUCK DRIVER [16 h]; EXCAVATOR OPERATOR [16 h]; COST [4150] | 4,150 | 4,150 |
| TAEXTSCL020003 |  | Install Pipes & Fittings | 24d | 2026-05-06 A | 2026-06-02 A | TAEXTSCL020002 | 100% |  |  |  |  | LABOR [128 h]; PLUMBER [128 h]; COST [72300] | 72,300 | 72,300 |
| TAEXTSCL020005 |  | Install Valves with fittings | 3d | 2026-05-10 A | 2026-05-12 A | TAEXTSCL020004 FF, TAPQDVTS0002 | 100% |  |  |  |  | LABOR [64 h]; PLUMBER [64 h]; COST [6193.6] | 6,193.6 | 6,193.6 |
| TAEXTSCL020004 |  | Backfilling Works for Trench | 16d | 2026-05-16 A | 2026-06-02 A | TAEXTSCL020003 | 100% |  |  |  |  | DUMP TRUCK [112 h]; WATER TANKER [40 h]; EXCAVATOR [56 h]; LABOR [110 h]; DUMP TRUCK DRIVER [112 h]; WATER TANKER DRIVER [40 h]; EXCAVATOR OPERATOR [56 h]; COMPACTOR [56 h]; COST [24500] | 24,500 | 24,500 |
| TAEXTSCL020006 |  | Valve Chamber works | 10d | 2026-05-17 A | 2026-05-27 A | TAEXTSCL020005 | 100% |  |  |  |  | WATER TANKER [56 h]; EXCAVATOR [56 h]; CONCRET MIXER [60 h]; LABOR [128 h]; WATER TANKER DRIVER [56 h]; EXCAVATOR OPERATOR [56 h]; PLUMBER [56 h]; STEEL FIXER [56 h]; CARPENTER [56 h]; MASON [56 h]; CONCRET MIXER OPERATOR [60 h]; COST [30187.5] | 30,187.5 | 30,187.5 |
| TAEXTSCL0200061 |  | Valve Chamber works Part 01 | 8d | 2026-06-04 A | 2026-06-20 A | TAEXTSCL020006, TAEXTSCL0200051 | 100% | 2027-03-01 | 2027-03-10 |  |  | WATER TANKER [56 h]; EXCAVATOR [56 h]; CONCRET MIXER [60 h]; LABOR [128 h]; WATER TANKER DRIVER [56 h]; EXCAVATOR OPERATOR [56 h]; PLUMBER [56 h]; STEEL FIXER [56 h]; CARPENTER [56 h]; MASON [56 h]; CONCRET MIXER OPERATOR [60 h]; COST [10062.5] | 10,062.5 | 10,062.5 |
| TAEXTSCL0200051 |  | Install Valves with fittings Part 01 | 2d | 2026-06-06 A | 2026-06-09 A | TAEXTSCL020005, TAPQDVTS00021 | 100% | 2027-02-27 | 2027-03-01 |  |  | LABOR [64 h]; PLUMBER [64 h]; COST [126.4] | 126.4 | 126.4 |
| TAEXTSCL020007 |  | Inspection Test | 4d | 2026-06-25 A | 2026-06-28 A | TAEXTSCL0200061, TAEXPTCL020008 | 100% | 2027-03-25 | 2027-03-30 |  |  | WATER TANKER [32 h]; LABOR [64 h]; WATER TANKER DRIVER [32 h]; PLUMBER [64 h]; COST [3850] | 3,850 | 3,850 |

| ID | WBS | Activity | Duration | Start | Finish | Predecessors | Complete | Remaining | Planned start | Planned finish | Total float | Free float | Resources | Cost | Actual cost |
| --- | --- | --- | --- | --- | --- | --- | --- | --- | --- | --- | --- | --- | --- | --- | --- |
|  | 20 | **Storm Networks** |  | 2026-02-21 | 2027-02-06 |  |  |  |  |  |  |  |  |  |  |
| TAEXSTCL020001 |  | Excavation works for Trench | 88d | 2026-02-21 A | 2026-06-02 A | TAEXSTCC030001 | 100% |  |  |  |  |  | DUMP TRUCK [172 h]; EXCAVATOR [88 h]; LABOR [44 h]; DUMP TRUCK DRIVER [172 h]; EXCAVATOR OPERATOR [88 h]; COST [188620] | 188,620 | 188,620 |
| TAEXSTCL020002 |  | Bedding Works | 71d | 2026-03-12 A | 2026-06-02 A | TAEXSTCL020001 | 100% |  |  |  |  |  | DUMP TRUCK [16 h]; EXCAVATOR [16 h]; LABOR [48 h]; DUMP TRUCK DRIVER [16 h]; EXCAVATOR OPERATOR [16 h]; COST [83945.3] | 83,945.28 | 83,945.28 |
| TAEXSTCL020003 |  | Install GRP Pipes & Fittings | 70d | 2026-03-14 A | 2026-06-02 A | TAEXSTCL020002 | 100% |  |  |  |  |  | EXCAVATOR [96 h]; LABOR [96 h]; EXCAVATOR OPERATOR [96 h]; PLUMBER [196 h]; COST [98630] | 98,630 | 98,630 |
| TAEXSTCL020004 |  | Backfilling Works for Trench | 60d | 2026-03-25 A | 2026-06-02 A | TAEXSTCL020003 FF+15d | 100% |  |  |  |  |  | DUMP TRUCK [240 h]; WATER TANKER [60 h]; EXCAVATOR [60 h]; LABOR [60 h]; DUMP TRUCK DRIVER [240 h]; WATER TANKER DRIVER [60 h]; EXCAVATOR OPERATOR [60 h]; COMPACTOR [120 h]; COST [90245] | 90,245 | 90,245 |
| TAEXSTCL020005 |  | Manhole Installation with backfilling | 51d | 2026-04-05 A | 2026-06-02 A | TAEXSTCL020004 FF+10d, TAEXSTCL020003 | 100% |  |  |  |  |  | DUMP TRUCK [105 h]; EXCAVATOR [104 h]; LABOR [208 h]; DUMP TRUCK DRIVER [105 h]; EXCAVATOR OPERATOR [104 h]; PLUMBER [104 h]; MASON [208 h]; COST [101230] | 101,230 | 101,230 |
| TAEXSTCL020006 |  | Install Catch Basin with UPVC Pipes & Fittings | 6d | 2026-05-24 A | 2026-05-30 A | TAEXSTCL020005 FS+24d, TAEXSTCC030006 FS+10d | 100% |  |  |  |  |  | EXCAVATOR [35 h]; LABOR [280 h]; EXCAVATOR OPERATOR [35 h]; PLUMBER [280 h]; COST [216840] | 216,840 | 216,840 |
| TAEXSTCL0200061 |  | Install Catch Basin with UPVC Pipes & Fittings Part 01 | 4d | 2026-06-06 A | 2026-06-11 A | TAEXSTCL020006, TAPQDVST0009 | 100% |  | 2026-08-06 | 2026-08-11 |  |  | EXCAVATOR [35 h]; LABOR [280 h]; EXCAVATOR OPERATOR [35 h]; PLUMBER [280 h]; COST [72280] | 72,280 | 72,280 |
| TAEXSTCL020007 |  | Leakage Test | 3d | 2026-06-23 A | 2027-02-06 | TAEXSTCL020005, TAEXSTCL0200061, TAEXTSCL020007 | 95% | 0.15d | 2027-03-29 | 2027-04-01 | 154.26d | 41.85d | WATER TANKER [24 h]; LABOR [24 h]; WATER TANKER DRIVER [24 h]; PLUMBER [24 h]; COST [10500] | 10,500 | 9,975 |
|  | 7 | **Local Road 03** |  | 2025-10-12 | 2027-08-29 |  |  |  |  |  |  |  |  |  |  |
|  | 2 | **Road Works** |  | 2025-10-12 | 2027-05-09 |  |  |  |  |  |  |  |  |  |  |
| TAEXRDCL030001 |  | Road Excavation and Disposal | 56d | 2025-10-12 A | 2025-12-15 A | TAEXRDCL050001 FS+7d | 100% |  |  |  |  |  | DUMP TRUCK [320 h]; EXCAVATOR [160 h]; LABOR [80 h]; DUMP TRUCK DRIVER [320 h]; EXCAVATOR OPERATOR [160 h]; COST [293112] | 293,112 | 293,112 |
| TAEXRDCL030002 |  | Backfilling Works for Road | 9d | 2026-04-15 A | 2026-04-25 A | TAEXRDCL030001 | 100% |  |  |  |  |  | ROLEER [112 h]; DUMP TRUCK [112 h]; WATER TANKER [30 h]; EXCAVATOR [112 h]; GRADER [112 h]; LABOR [112 h]; GRADER OPERATOR [112 h]; DUMP TRUCK DRIVER [112 h]; WATER TANKER DRIVER [30 h]; EXCAVATOR OPERATOR [112 h]; ROLLER OPERATOR [112 h]; COST [77513] | 77,513 | 77,513 |
| TAEXRDCL0300021 |  | Backfilling Works for Road Part 01 | 9d | 2026-08-02 A | 2026-12-14 | TAEXRDCL030002, TAEXRDCL0400021, TAEXPTCL030006 | 80% | 1.8d | 2026-09-26 | 2026-10-06 | 43.45d | 0d | ROLEER [112 h]; DUMP TRUCK [112 h]; WATER TANKER [30 h]; EXCAVATOR [112 h]; GRADER [112 h]; LABOR [112 h]; GRADER OPERATOR [112 h]; DUMP TRUCK DRIVER [112 h]; WATER TANKER DRIVER [30 h]; EXCAVATOR OPERATOR [112 h]; ROLLER OPERATOR [112 h]; COST [77513] | 77,513 | 62,010.4 |
| TAEXRDCL030003 |  | Subgrade Works | 8d | 2026-08-02 A | 2026-08-08 A | TAEXRDCL0300021, TAEXRDCL040003 | 100% |  | 2026-10-06 | 2026-10-15 |  |  | ROLEER [40 h]; DUMP TRUCK [40 h]; WATER TANKER [24 h]; EXCAVATOR [32 h]; GRADER [40 h]; LABOR [56 h]; GRADER OPERATOR [40 h]; DUMP TRUCK DRIVER [40 h]; WATER TANKER DRIVER [24 h]; EXCAVATOR OPERATOR [32 h]; ROLLER OPERATOR [40 h]; COST [95648.2] | 95,648.16 | 95,648.16 |
| TAEXRDCL030004 |  | ABC aggregate Base Course Works | 15d | 2026-08-08 A | 2026-08-23 A | TAEXRDCL030003, TAEXSTCL030006 FS+15d, TAPQDVRD00011 | 100% |  | 2026-10-12 | 2026-10-29 |  |  | ROLEER [64 h]; DUMP TRUCK [96 h]; WATER TANKER [32 h]; EXCAVATOR [24 h]; GRADER [64 h]; LABOR [64 h]; GRADER OPERATOR [64 h]; DUMP TRUCK DRIVER [96 h]; WATER TANKER DRIVER [32 h]; EXCAVATOR OPERATOR [24 h]; ROLLER OPERATOR [64 h]; COST [266839] | 266,839 | 266,839 |
| TAEXRDCL030005 |  | MBC1 layer | 2d | 2026-08-26 A | 2026-08-27 A | TAEXRDCL030004 | 100% |  | 2026-10-19 | 2026-10-21 |  |  | MC1 sprinker [8 h]; MC DRIVER [8 h]; COST [5000] | 5,000 | 5,000 |
| TAEXRDCL030006 |  | BBC Base Course | 2d | 2026-08-28 A | 2026-08-29 A | TAEXRDCL030005 | 100% |  | 2026-10-21 | 2026-10-24 |  |  | ROLEER [48 h]; DUMP TRUCK [72 h]; MILLING MACHINE [24 h]; WHEEL ROLLER [48 h]; LABOR [100 h]; DUMP TRUCK DRIVER [72 h]; MILLING MACHINE OPERATOR [24 h]; WHEEL ROLLER OPERATOR [48 h]; ROLLER OPERATOR [48 h]; COST [604278] | 604,278 | 604,278 |
| TAEXRDCL030008 |  | Precast Concret Kerps | 9d | 2026-10-10 A | 2027-04-21 | TAEXRDCL030006, TAEXRDC L020008 | 40% | 5.4d | 2027-04-11 | 2027-04-21 | 2.5d | 0d | LABOR [540 h]; COST [345659] | 345,659 | 138,263.6 |
| TAEXRDCL030007 |  | BWC Asphalt Wearing Course with RC | 1d | 2027-04-21 | 2027-04-22 | TAEXRDCL030006, TAEXRDCL030008 |  |  |  |  | 66.1d | 0d | ROLEER [16 h]; DUMP TRUCK [32 h]; MILLING MACHINE [8 h]; WHEEL ROLLER [16 h]; LABOR [40 h]; DUMP TRUCK DRIVER [32 h]; MILLING MACHINE OPERATOR [8 h]; WHEEL ROLLER OPERATOR [16 h]; ROLLER OPERATOR [16 h]; COST [311511] | 311,511 |  |
| TAEXRDCL030009 |  | Precast Interlock Works | 8d | 2027-04-22 | 2027-05-02 | TAEXRDCL030008, TAEXRDCL030007 |  |  |  |  | 66.1d | 0d | LABOR [840 h]; COST [212407] | 212,407 |  |
| TAEXRDCL030010 |  | Stone Paving works | 3d | 2027-05-02 | 2027-05-05 | TAEXRDCL030009 |  |  |  |  | 66.1d | 0d | DUMP TRUCK [32 h]; LABOR [160 h]; DUMP TRUCK DRIVER [32 h]; COST [35000] | 35,000 |  |
| TAEXRDCL030011 |  | Road Marking | 1d | 2027-05-05 | 2027-05-06 | TAEXRDCL030010 |  |  |  |  | 66.1d | 0d | LABOR [32 h]; COST [4800] | 4,800 |  |
| TAEXRDCL030012 |  | Traffic Sinage | 2d | 2027-05-06 | 2027-05-09 | TAEXRDCL030011 |  |  |  |  | 66.1d | 64.26d | EXCAVATOR [8 h]; LABOR [32 h]; EXCAVATOR OPERATOR [8 h]; COST [42000] | 42,000 |  |

| ID | WBS | Activity | Duration | Start | Finish | Predecessors | Complete | Remaining | Planned start | Planned finish | Total float | Free float | Resources | Cost | Actual cost |
| --- | --- | --- | --- | --- | --- | --- | --- | --- | --- | --- | --- | --- | --- | --- | --- |
|  | 1 | **Electrical Works** |  | 2026-08-08 | 2027-07-05 |  |  |  |  |  |  |  |  |  |  |
| TAEXELCL030002 |  | Drawpit and PVC Pipes Installation | 8d | 2026-08-08 A | 2027-04-17 | TAEXELCL030001, TAPQDVEL0005 | 75% | 2d | 2027-03-08 | 2027-03-17 | 66.4d | 0d | ELECTRACIAN [80 h]; EXCAVATOR [40 h]; LABOR [80 h]; EXCAVATOR OPERATOR [40 h]; COST [4560] | 4,560 | 3,420 |
| TAEXELCL030003 |  | Road Crossing Ducts | 2d | 2026-08-08 A | 2027-04-18 | TAEXELCL030002 | 75% | 0.5d | 2027-03-10 | 2027-03-13 | 66.4d | 0d | DUMP TRUCK [40 h]; EXCAVATOR [40 h]; DUMP TRUCK DRIVER [40 h]; EXCAVATOR OPERATOR [40 h]; COST [260] | 260 | 195 |
| TAEXELCL030001 |  | Trench Cut off | 11d | 2026-09-06 A | 2027-02-27 | TAEXELCL020001 | 51% | 5.39d | 2027-01-13 | 2027-01-26 | -29.3d | 0d | DUMP TRUCK [160 h]; EXCAVATOR [88 h]; LABOR [44 h]; DUMP TRUCK DRIVER [160 h]; EXCAVATOR OPERATOR [88 h]; COST [26786.2] | 26,786.25 | 13,660.99 |
| TAEXELCL030005 |  | Cables Pulling | 3d | 2026-09-20 A | 2027-04-26 | TAEXELCL030002, TAEXELCL030003, TAEXELCL030004 | 25% | 2.25d | 2027-04-07 | 2027-04-11 | 66.4d | 58.35d | ELECTRACIAN [120 h]; LABOR [160 h]; COST [168000] | 168,000 | 42,000 |
| TAEXELCL030004 |  | Trench Backfilling | 10d | 2026-10-10 A | 2027-04-24 | TAEXELCL030003 | 51% | 4.9d | 2027-04-11 | 2027-04-22 | 66.4d | 0d | DUMP TRUCK [160 h]; WATER TANKER [144 h]; EXCAVATOR [160 h]; LABOR [160 h]; DUMP TRUCK DRIVER [160 h]; WATER TANKER DRIVER [144 h]; EXCAVATOR OPERATOR [160 h]; COMPACTOR [144 h]; COST [10530] | 10,530 | 5,370.3 |
| TAEXELCL030006 |  | Poles RC Foundation | 3d | 2027-04-17 | 2027-04-20 | TAEXELCL030002, TAPQDVEL0005 |  |  |  |  | 71.05d | 0d | EXCAVATOR [40 h]; LABOR [40 h]; EXCAVATOR OPERATOR [40 h]; COST [49510] | 49,510 |  |
| TAEXELCL030008 |  | Lighting Pole Installation with Luminares | 5d | 2027-04-20 | 2027-04-26 | TAEXELCL030006 |  |  |  |  | 76.05d | 37d | ELECTRACIAN [40 h]; CRANE [40 h]; CRANE OPERATOR [40 h]; COST [91500] | 91,500 |  |
| TAEXELCL030007 |  | Earthing cables | 2d | 2027-07-03 | 2027-07-05 | TAEXELCL030006, TAEXELCL030005, TAEXELCL020007 |  |  |  |  | 8.05d | 0d | ELECTRACIAN [80 h]; LABOR [40 h]; COST [2320] | 2,320 |  |
|  | 3 | **Telecommunication Works** |  | 2026-08-08 | 2027-06-20 |  |  |  |  |  |  |  |  |  |  |
| TAEXTCCL030002 |  | Drawpit and PVC Pipes Installation | 4d | 2026-08-08 A | 2027-06-08 | TAEXTCCL030001, TAEXTCCL020002 | 67% | 1.32d | 2027-05-04 | 2027-05-09 | -20.27d | 0d | ELECTRACIAN [80 h]; EXCAVATOR [40 h]; LABOR [16 h]; EXCAVATOR OPERATOR [40 h]; COST [80250] | 80,250 | 53,767.5 |
| TAEXTCCL030003 |  | Road Crossing Ducts | 2d | 2026-08-08 A | 2027-06-08 | TAEXTCCL030002 | 67% | 0.66d | 2027-05-09 | 2027-05-11 | 28.07d | 0d | DUMP TRUCK [32 h]; EXCAVATOR [16 h]; DUMP TRUCK DRIVER [32 h]; EXCAVATOR OPERATOR [16 h]; COST [8600] | 8,600 | 5,762 |
| TAEXTCCL030001 |  | Trench Cut off | 7d | 2027-03-27 | 2027-04-04 | TAEXTCCL020001 |  |  |  |  | -17.61d | 0d | DUMP TRUCK [110 h]; EXCAVATOR [56 h]; LABOR [30 h]; DUMP TRUCK DRIVER [110 h]; EXCAVATOR OPERATOR [56 h]; COST [10250] | 10,250 |  |
| TAEXTCCL030004 |  | Trench Backfilling | 10d | 2027-06-08 | 2027-06-20 | TAEXTCCL030003 |  |  |  |  | 28.07d | 6.34d | DUMP TRUCK [80 h]; WATER TANKER [40 h]; EXCAVATOR [40 h]; LABOR [110 h]; DUMP TRUCK DRIVER [80 h]; WATER TANKER DRIVER [40 h]; EXCAVATOR OPERATOR [40 h]; COMPACTOR [40 h]; COST [26430] | 26,430 |  |
|  | 4 | **CCTV Works** |  | 2027-01-20 | 2027-08-29 |  |  |  |  |  |  |  |  |  |  |
| TAEXCCCL030001 |  | Pipe Installation with manhole | 11d | 2027-01-20 | 2027-02-02 | TAEXCCCL020001 |  |  |  |  | -15.55d | 0d | ELECTRACIAN [96 h]; LABOR [192 h]; COST [5723] | 5,723 |  |
| TAEXCCCL030002 |  | CCTV Swiches Lighting panels Installation | 13d | 2027-07-17 | 2027-08-01 | TAEXCCCL030001, TAEXCCCL020002 |  |  |  |  | -15.55d | 0d | ELECTRACIAN [330 h]; EXCAVATOR [40 h]; LABOR [330 h]; EXCAVATOR OPERATOR [40 h]; COST [2578] | 2,578 |  |
| TAEXCCCL030003 |  | Cable laying and connected with Panels | 10d | 2027-08-01 | 2027-08-12 | TAEXCCCL030002 |  |  |  |  | -14.55d | 0d | ELECTRACIAN [160 h]; LABOR [320 h]; COST [18176] | 18,176 |  |
| TAEXCCCL030004 |  | Pole Installation with IP Outdoor CCTV POE Camera | 14d | 2027-08-12 | 2027-08-29 | TAEXCCCL030003 |  |  |  |  | -14.55d | 1.72d | ELECTRACIAN [112 h]; EXCAVATOR [60 h]; LABOR [112 h]; EXCAVATOR OPERATOR [60 h]; COST [4603] | 4,603 |  |
|  | 5 | **Potable Networks** |  | 2026-06-09 | 2026-08-16 |  |  |  |  |  |  |  |  |  |  |
| TAEXPTCL030001 |  | Excavation works for Trench | 17d | 2026-06-09 A | 2026-07-25 A | TAPQDVPT00011 | 100% |  | 2026-08-12 | 2026-09-01 |  |  | DUMP TRUCK [110 h]; EXCAVATOR [50 h]; LABOR [10 h]; DUMP TRUCK DRIVER [110 h]; EXCAVATOR OPERATOR [50 h]; COST [57309.6] | 57,309.62 | 57,309.62 |
| TAEXPTCL030003 |  | Install Pipes & Fittings | 7d | 2026-06-21 A | 2026-07-25 A | TAEXPTCL030002, TAEXPTCL020003, TAEXTSCL030003 | 100% |  | 2026-08-17 | 2026-08-24 |  |  | LABOR [112 h]; PLUMBER [56 h]; COST [72350] | 72,350 | 72,350 |
| TAEXPTCL030002 |  | Bedding Works | 2d | 2026-06-21 A | 2026-07-25 A | TAEXPTCL030001, TAEXTSCL030002 | 100% |  | 2026-09-01 | 2026-09-03 |  |  | DUMP TRUCK [16 h]; EXCAVATOR [16 h]; LABOR [32 h]; DUMP TRUCK DRIVER [16 h]; EXCAVATOR OPERATOR [16 h]; COST [7050] | 7,050 | 7,050 |
| TAEXPTCL030006 |  | Valve Chamber works | 16d | 2026-06-25 A | 2026-08-11 A | TAEXPTCL030008 SS, TAEXPTCL0200071, TAEXPTCL030005 | 100% |  | 2026-11-05 | 2026-11-24 |  |  | WATER TANKER [56 h]; EXCAVATOR [56 h]; CONCRET MIXER [64 h]; LABOR [128 h]; WATER TANKER DRIVER [56 h]; EXCAVATOR OPERATOR [56 h]; PLUMBER [56 h]; STEEL FIXER [56 h]; CARPENTER [56 h]; MASON [56 h]; CONCRET MIXER OPERATOR [64 h]; COST [20250] | 20,250 | 20,250 |
| TAEXPTCL030004 |  | Backfilling Works for Trench | 10d | 2026-06-30 A | 2026-07-25 A | TAEXPTCL030003 | 100% |  | 2026-07-21 | 2026-08-02 |  |  | DUMP TRUCK [208 h]; WATER TANKER [128 h]; EXCAVATOR [104 h]; LABOR [105 h]; DUMP TRUCK DRIVER [208 h]; WATER TANKER DRIVER [128 h]; EXCAVATOR OPERATOR [104 h]; COMPACTOR [86 h]; COST [37985.9] | 37,985.92 | 37,985.92 |
| TAEXPTCL030008 |  | Install fire hydrent | 6d | 2026-07-16 A | 2026-08-02 A | TAEXPTCL030003, TAEXPTCL040006 | 100% |  | 2026-09-29 | 2026-10-06 |  |  | LABOR [96 h]; PLUMBER [48 h]; COST [24000] | 24,000 | 24,000 |
| TAEXPTCL030005 |  | Install Valves with fittings | 4d | 2026-07-23 A | 2026-07-25 A | TAEXPTCL030004 FF, TAPQDVPT00021, TAEXPTCL040005 | 100% |  | 2026-09-02 | 2026-09-07 |  |  | LABOR [64 h]; PLUMBER [64 h]; COST [9600] | 9,600 | 9,600 |
| TAEXPTCL030007 |  | Inspection Test | 4d | 2026-08-15 A | 2026-08-16 A | TAEXPTCL030006, TAEXPTCL040008 | 100% |  | 2026-08-18 | 2026-08-23 |  |  | WATER TANKER [32 h]; LABOR [32 h]; WATER TANKER DRIVER [32 h]; PLUMBER [32 h]; COST [4005] | 4,005 | 4,005 |

| ID | WBS | Activity | Duration | Start | Finish | Predecessors | Complete | Planned start | Planned finish | Resources | Cost | Actual cost |
| --- | --- | --- | --- | --- | --- | --- | --- | --- | --- | --- | --- | --- |
|  | 6 | **TSE Networks** |  | 2026-06-09 | 2026-08-16 |  |  |  |  |  |  |  |
| TAEXTSCL030001 |  | Excavation works for Trench | 6d | 2026-06-09 A | 2026-07-25 A | TAEXTSCL040001 | 100% | 2026-06-28 | 2026-07-04 | DUMP TRUCK [96 h]; EXCAVATOR [48 h]; LABOR [24 h]; DUMP TRUCK DRIVER [96 h]; EXCAVATOR OPERATOR [48 h]; COST [66703.3] | 66,703.34 | 66,703.34 |
| TAEXTSCL030002 |  | Bedding Works | 2d | 2026-06-21 A | 2026-07-25 A | TAEXTSCL030001 | 100% | 2026-07-05 | 2026-07-06 | DUMP TRUCK [16 h]; EXCAVATOR [16 h]; LABOR [32 h]; DUMP TRUCK DRIVER [16 h]; EXCAVATOR OPERATOR [16 h]; COST [4000] | 4,000 | 4,000 |
| TAEXTSCL030003 |  | Install Pipes & Fittings | 7d | 2026-06-21 A | 2026-07-25 A | TAEXTSCL030002, TAEXTSCL020003 | 100% | 2026-07-07 | 2026-07-14 | LABOR [112 h]; PLUMBER [112 h]; COST [58930] | 58,930 | 58,930 |
| TAEXTSCL030006 |  | Valve Chamber works | 16d | 2026-06-25 A | 2026-08-12 A | TAEXTSCL030005 | 100% | 2027-01-11 | 2027-01-30 | WATER TANKER [30 h]; EXCAVATOR [56 h]; CONCRET MIXER [60 h]; LABOR [128 h]; WATER TANKER DRIVER [30 h]; EXCAVATOR OPERATOR [56 h]; PLUMBER [56 h]; STEEL FIXER [56 h]; CARPENTER [40 h]; MASON [56 h]; CONCRET MIXER OPERATOR [60 h]; COST [40250] | 40,250 | 40,250 |
| TAEXTSCL030004 |  | Backfilling Works for Trench | 13d | 2026-06-28 A | 2026-07-25 A | TAEXTSCL030003, TAEXPTCL030004 | 100% | 2026-08-13 | 2026-08-29 | DUMP TRUCK [112 h]; WATER TANKER [56 h]; EXCAVATOR [56 h]; LABOR [56 h]; DUMP TRUCK DRIVER [112 h]; WATER TANKER DRIVER [56 h]; EXCAVATOR OPERATOR [56 h]; COMPACTOR [40 h]; COST [22500] | 22,500 | 22,500 |
| TAEXTSCL030005 |  | Install Valves with fittings | 4d | 2026-07-23 A | 2026-07-25 A | TAEXTSCL030004 FF, TAEXTSCL040005 | 100% | 2026-10-12 | 2026-10-17 | LABOR [64 h]; PLUMBER [64 h]; COST [6320] | 6,320 | 6,320 |
| TAEXTSCL030007 |  | Inspection Test | 4d | 2026-08-15 A | 2026-08-16 A | TAEXTSCL030006, TAEXPTCL030007 | 100% | 2026-08-23 | 2026-08-27 | WATER TANKER [32 h]; LABOR [64 h]; WATER TANKER DRIVER [32 h]; PLUMBER [64 h]; COST [3850] | 3,850 | 3,850 |
|  | 7 | **Sewerage Networks** |  | 2026-01-04 | 2026-06-02 |  |  |  |  |  |  |  |
| TAEXSWCL030001 |  | Excavation works for Trench | 19d | 2026-01-04 A | 2026-01-25 A | TAEXSWCL040001 | 100% |  |  | DUMP TRUCK [176 h]; EXCAVATOR [88 h]; LABOR [44 h]; DUMP TRUCK DRIVER [176 h]; EXCAVATOR OPERATOR [88 h]; COST [68350] | 68,350 | 68,350 |
| TAEXSWCL030002 |  | Bedding Works | 9d | 2026-01-27 A | 2026-02-05 A | TAEXSWCL030001 | 100% |  |  | DUMP TRUCK [16 h]; EXCAVATOR [16 h]; LABOR [48 h]; DUMP TRUCK DRIVER [16 h]; EXCAVATOR OPERATOR [16 h]; COST [23486.2] | 23,486.15 | 23,486.15 |
| TAEXSWCL030003 |  | Install GRP Pipes & Fittings | 75d | 2026-01-28 A | 2026-04-25 A | TAEXSWCL030002 | 100% |  |  | EXCAVATOR [64 h]; LABOR [128 h]; EXCAVATOR OPERATOR [64 h]; PLUMBER [64 h]; COST [98700] | 98,700 | 98,700 |
| TAEXSWCL030004 |  | Backfilling Works for Trench | 94d | 2026-02-04 A | 2026-05-24 A | TAEXSWCL030003 FF+15d | 100% |  |  | DUMP TRUCK [240 h]; WATER TANKER [120 h]; EXCAVATOR [120 h]; LABOR [120 h]; DUMP TRUCK DRIVER [240 h]; WATER TANKER DRIVER [120 h]; EXCAVATOR OPERATOR [120 h]; COMPACTOR [120 h]; COST [20580] | 20,580 | 20,580 |
| TAEXSWCL030005 |  | Manhole Installation with backfilling | 45d | 2026-04-12 A | 2026-06-02 A | TAEXSWCL030004 FF+10d, TAEXSWCL030003, TAPQDVSW0002 | 100% |  |  | DUMP TRUCK [104 h]; EXCAVATOR [72 h]; LABOR [104 h]; DUMP TRUCK DRIVER [104 h]; EXCAVATOR OPERATOR [72 h]; PLUMBER [72 h]; MASON [32 h]; COST [64200] | 64,200 | 64,200 |
| TAEXSWCL030006 |  | Leakage Test | 10d | 2026-05-23 A | 2026-06-02 A | TAEXSWCL030005 | 100% |  |  | WATER TANKER [24 h]; LABOR [48 h]; WATER TANKER DRIVER [24 h]; PLUMBER [24 h]; COST [25694.5] | 25,694.45 | 25,694.45 |
|  | 8 | **Storm Networks** |  | 2026-01-28 | 2026-09-26 |  |  |  |  |  |  |  |
| TAEXSTCL030001 |  | Excavation works for Trench | 72d | 2026-01-28 A | 2026-04-21 A | TAEXSTCU210001 | 100% |  |  | DUMP TRUCK [172 h]; EXCAVATOR [88 h]; LABOR [44 h]; DUMP TRUCK DRIVER [172 h]; EXCAVATOR OPERATOR [88 h]; COST [88620] | 88,620 | 88,620 |
| TAEXSTCL030002 |  | Bedding Works | 66d | 2026-02-15 A | 2026-05-02 A | TAEXSTCL030001 FS+2d | 100% |  |  | DUMP TRUCK [24 h]; EXCAVATOR [24 h]; LABOR [48 h]; DUMP TRUCK DRIVER [24 h]; EXCAVATOR OPERATOR [24 h]; COST [83945.3] | 83,945.28 | 83,945.28 |
| TAEXSTCL030003 |  | Install GRP Pipes & Fittings | 4d | 2026-02-18 A | 2026-02-22 A | TAEXSTCL030002 FS+10d | 100% |  |  | EXCAVATOR [64 h]; LABOR [64 h]; EXCAVATOR OPERATOR [64 h]; PLUMBER [128 h]; COST [93698.5] | 93,698.5 | 93,698.5 |
| TAEXSTCL030004 |  | Backfilling Works for Trench | 11d | 2026-03-23 A | 2026-04-04 A | TAEXSTCL030003 | 100% |  |  | DUMP TRUCK [240 h]; WATER TANKER [120 h]; EXCAVATOR [120 h]; LABOR [240 h]; DUMP TRUCK DRIVER [240 h]; WATER TANKER DRIVER [120 h]; EXCAVATOR OPERATOR [120 h]; COMPACTOR [120 h]; COST [93385] | 93,385 | 93,385 |
| TAEXSTCL030005 |  | Manhole Installation with backfilling | 7d | 2026-05-23 A | 2026-05-30 A | TAEXSTCL030003 | 100% |  |  | DUMP TRUCK [105 h]; EXCAVATOR [104 h]; LABOR [208 h]; DUMP TRUCK DRIVER [105 h]; EXCAVATOR OPERATOR [104 h]; PLUMBER [104 h]; MASON [208 h]; COST [40984] | 40,984 | 40,984 |
| TAEXSTCL0300051 |  | Manhole Installation with backfilling Part 01 | 3d | 2026-06-06 A | 2026-08-02 A | TAEXSTCL0300041 FF+20d, TAEXSTCL030005, TAPQDVST00061 | 100% | 2026-11-07 | 2026-11-10 | DUMP TRUCK [105 h]; EXCAVATOR [104 h]; LABOR [208 h]; DUMP TRUCK DRIVER [105 h]; EXCAVATOR OPERATOR [104 h]; PLUMBER [104 h]; MASON [208 h]; COST [10246] | 10,246 | 10,246 |
| TAEXSTCL030006 |  | Install Catch Basin with UPVC Pipes & Fittings | 9d | 2026-07-05 A | 2026-08-02 A | TAEXSTCL050006, TAEXSTCL0300051 | 100% | 2026-11-12 | 2026-11-23 | EXCAVATOR [35 h]; LABOR [72 h]; EXCAVATOR OPERATOR [35 h]; PLUMBER [72 h]; COST [89800] | 89,800 | 89,800 |
| TAEXSTCL0300041 |  | Backfilling Works for Trench Part 01 | 4d | 2026-07-22 A | 2026-07-25 A | TAEXSTCL0300031 FF+25d, TAEXSTCL030004, TAEXTSCL030004 | 100% | 2026-08-22 | 2026-08-25 | DUMP TRUCK [240 h]; WATER TANKER [120 h]; EXCAVATOR [120 h]; LABOR [240 h]; DUMP TRUCK DRIVER [240 h]; WATER TANKER DRIVER [120 h]; EXCAVATOR OPERATOR [120 h]; COMPACTOR [120 h]; COST [4915] | 4,915 | 4,915 |
| TAEXSTCL0300031 |  | Install GRP Pipes & Fittings Part 01 | 3d | 2026-07-23 A | 2026-07-25 A | TAEXSTCL030003 | 100% | 2026-07-25 | 2026-07-27 | EXCAVATOR [64 h]; LABOR [64 h]; EXCAVATOR OPERATOR [64 h]; PLUMBER [128 h]; COST [4931.5] | 4,931.5 | 4,931.5 |
| TAEXSTCL030007 |  | Leakage Test | 3d | 2026-08-01 A | 2026-09-26 A | TAEXSTCL030006, TAEXSTCL0300051, TAEXTSCL030007 | 100% | 2026-09-27 | 2026-09-30 | WATER TANKER [24 h]; LABOR [24 h]; WATER TANKER DRIVER [24 h]; PLUMBER [24 h]; COST [11200] | 11,200 | 11,200 |

| ID | WBS | Activity | Duration | Start | Finish | Predecessors | Complete | Remaining | Planned start | Planned finish | Total float | Free float | Resources | Cost | Actual cost |
| --- | --- | --- | --- | --- | --- | --- | --- | --- | --- | --- | --- | --- | --- | --- | --- |
|  | 9 | **Local Road 04** |  | 2025-12-09 | 2027-08-25 |  |  |  |  |  |  |  |  |  |  |
|  | 2 | **Road Works** |  | 2026-05-23 | 2027-06-12 |  |  |  |  |  |  |  |  |  |  |
| TAEXRDCL040001 |  | Road Excavation and Disposal | 6d | 2026-05-23 A | 2026-05-28 A | TAEXRDC L020001 | 100% |  |  |  |  |  | DUMP TRUCK [64 h]; EXCAVATOR [32 h]; LABOR [32 h]; DUMP TRUCK DRIVER [64 h]; EXCAVATOR OPERATOR [32 h]; COST [92180.9] | 92,180.88 | 92,180.88 |
| TAEXRDCL040002 |  | Backfilling Works for Road | 5d | 2026-05-24 A | 2026-05-29 A | TAEXRDCL040001 | 100% |  | 2026-05-24 | 2026-05-28 |  |  | ROLEER [44 h]; DUMP TRUCK [176 h]; WATER TANKER [44 h]; EXCAVATOR [88 h]; GRADER [88 h]; LABOR [44 h]; GRADER OPERATOR [88 h]; DUMP TRUCK DRIVER [176 h]; WATER TANKER DRIVER [44 h]; EXCAVATOR OPERATOR [88 h]; ROLLER OPERATOR [44 h]; COST [69761.7] | 69,761.7 | 69,761.7 |
| TAEXRDCL0400011 |  | Road Excavation and Disposal Part 01 | 3d | 2026-06-06 A | 2026-06-13 A | TAEXRDCL040001, TAEXSTCL0400051 | 100% |  | 2026-11-22 | 2026-11-25 |  |  | DUMP TRUCK [64 h]; EXCAVATOR [32 h]; LABOR [32 h]; DUMP TRUCK DRIVER [64 h]; EXCAVATOR OPERATOR [32 h]; COST [931.12] | 931.12 | 931.12 |
| TAEXRDCL0400021 |  | Backfilling Works for Road Part 01 | 8d | 2026-06-06 A | 2026-06-16 A | TAEXRDCL040002, TAEXRDCL0400011 | 100% |  | 2026-11-25 | 2026-12-05 |  |  | ROLEER [44 h]; DUMP TRUCK [176 h]; WATER TANKER [44 h]; EXCAVATOR [88 h]; GRADER [88 h]; LABOR [44 h]; GRADER OPERATOR [88 h]; DUMP TRUCK DRIVER [176 h]; WATER TANKER DRIVER [44 h]; EXCAVATOR OPERATOR [88 h]; ROLLER OPERATOR [44 h]; COST [85264.3] | 85,264.3 | 85,264.3 |
| TAEXRDCL040003 |  | Subgrade Works | 5d | 2026-07-12 A | 2026-07-18 A | TAEXRDCA010001 FF, TAEXRDCL0400021, TAEXRDCL050003 | 100% |  | 2026-11-05 | 2026-11-11 |  |  | ROLEER [40 h]; DUMP TRUCK [80 h]; WATER TANKER [25 h]; EXCAVATOR [40 h]; GRADER [40 h]; LABOR [40 h]; GRADER OPERATOR [40 h]; DUMP TRUCK DRIVER [80 h]; WATER TANKER DRIVER [25 h]; EXCAVATOR OPERATOR [40 h]; ROLLER OPERATOR [40 h]; COST [95648.2] | 95,648.16 | 95,648.16 |
| TAEXRDCL040004 |  | ABC aggregate Base Course Works | 6d | 2026-07-19 A | 2026-07-26 A | TAEXRDCL040003, TAEXSTCL040006 FS+6d, TAPQDVRD00011 | 100% |  | 2026-09-14 | 2026-09-21 |  |  | ROLEER [64 h]; DUMP TRUCK [240 h]; WATER TANKER [64 h]; EXCAVATOR [64 h]; GRADER [64 h]; LABOR [64 h]; GRADER OPERATOR [64 h]; DUMP TRUCK DRIVER [240 h]; WATER TANKER DRIVER [64 h]; EXCAVATOR OPERATOR [64 h]; ROLLER OPERATOR [64 h]; COST [266839] | 266,839 | 266,839 |
| TAEXRDCL040005 |  | MBC1 layer | 1d | 2026-08-02 A | 2026-08-05 A | TAEXRDCL040004 | 100% |  | 2026-09-27 | 2026-09-28 |  |  | MC1 sprinker [8 h]; MC DRIVER [8 h]; COST [5000] | 5,000 | 5,000 |
| TAEXRDCL040006 |  | BBC Base Course | 2d | 2026-08-02 A | 2026-08-06 A | TAEXRDCL040005 | 100% |  | 2026-09-28 | 2026-09-30 |  |  | ROLEER [48 h]; DUMP TRUCK [72 h]; MILLING MACHINE [24 h]; WHEEL ROLLER [48 h]; LABOR [100 h]; DUMP TRUCK DRIVER [72 h]; MILLING MACHINE OPERATOR [24 h]; WHEEL ROLLER OPERATOR [48 h]; ROLLER OPERATOR [48 h]; COST [404278] | 404,278 | 404,278 |
| TAEXRDCL040008 |  | Precast Concret Kerps | 16d | 2026-09-20 A | 2027-04-24 | TAEXRDCL040006, TAEXRDCL030008 | 90% | 1.6d | 2027-04-01 | 2027-04-20 | 2.5d | 0d | LABOR [510 h]; COST [745659] | 745,659 | 671,093.1 |
| TAEXRDCL040007 |  | BWC Asphalt Wearing Course with RC | 20d | 2027-04-24 | 2027-05-17 | TAEXRDCL040006, TAEXRDCL040008 |  |  |  |  | 37.5d | 0d | ROLEER [16 h]; DUMP TRUCK [32 h]; MILLING MACHINE [8 h]; WHEEL ROLLER [16 h]; LABOR [40 h]; DUMP TRUCK DRIVER [32 h]; MILLING MACHINE OPERATOR [8 h]; WHEEL ROLLER OPERATOR [16 h]; ROLLER OPERATOR [16 h]; COST [411511] | 411,511 |  |
| TAEXRDCL040009 |  | Precast Interlock Works | 12d | 2027-05-17 | 2027-05-31 | TAEXRDCL040008, TAEXRDCL040007 |  |  |  |  | 37.5d | 0d | LABOR [240 h]; COST [112407] | 112,407 |  |
| TAEXRDCL040010 |  | Stone Paving works | 7d | 2027-05-31 | 2027-06-08 | TAEXRDCL040009 |  |  |  |  | 37.5d | 0d | DUMP TRUCK [32 h]; LABOR [160 h]; DUMP TRUCK DRIVER [32 h]; COST [535000] | 535,000 |  |
| TAEXRDCL040011 |  | Road Marking | 1d | 2027-06-08 | 2027-06-09 | TAEXRDCL040010 |  |  |  |  | 37.5d | 0d | LABOR [32 h]; COST [4800] | 4,800 |  |
| TAEXRDCL040012 |  | Traffic Sinage | 2d | 2027-06-09 | 2027-06-12 | TAEXRDCL040011 |  |  |  |  | 37.5d | 35.66d | EXCAVATOR [8 h]; LABOR [32 h]; EXCAVATOR OPERATOR [8 h]; COST [42000] | 42,000 |  |
|  | 1 | **Electrical Works** |  | 2026-06-30 | 2027-07-07 |  |  |  |  |  |  |  |  |  |  |
| TAEXELCL040001 |  | Trench Cut off | 14d | 2026-06-30 A | 2027-03-13 | TAEXELCL030001 | 10% | 12.6d | 2026-12-20 | 2027-01-05 | -29.3d | 0d | DUMP TRUCK [160 h]; EXCAVATOR [112 h]; LABOR [56 h]; DUMP TRUCK DRIVER [160 h]; EXCAVATOR OPERATOR [112 h]; COST [27686.2] | 27,686.25 | 2,768.62 |
| TAEXELCL040002 |  | Drawpit and PVC Pipes Installation | 8d | 2026-07-04 A | 2027-04-18 | TAEXELCL040001, TAPQDVEL0005 | 67% | 2.64d | 2027-03-14 | 2027-03-23 | 61.75d | 0d | ELECTRACIAN [80 h]; EXCAVATOR [40 h]; LABOR [80 h]; EXCAVATOR OPERATOR [40 h]; COST [4560] | 4,560 | 3,055.2 |
| TAEXELCL040003 |  | Road Crossing Ducts | 2d | 2026-07-04 A | 2027-04-19 | TAEXELCL040002 | 67% | 0.66d | 2027-03-23 | 2027-03-25 | 61.75d | 0d | DUMP TRUCK [40 h]; EXCAVATOR [40 h]; DUMP TRUCK DRIVER [40 h]; EXCAVATOR OPERATOR [40 h]; COST [260] | 260 | 174.2 |
| TAEXELCL040006 |  | Poles RC Foundation | 3d | 2027-04-18 | 2027-04-21 | TAEXELCL040002, TAPQDVEL0005 |  |  |  |  | 72.41d | 0d | EXCAVATOR [40 h]; LABOR [40 h]; EXCAVATOR OPERATOR [40 h]; COST [9510] | 9,510 |  |
| TAEXELCL040004 |  | Trench Backfilling | 10d | 2027-04-19 | 2027-05-01 | TAEXELCL040003 |  |  |  |  | 61.75d | 0d | DUMP TRUCK [160 h]; WATER TANKER [144 h]; EXCAVATOR [160 h]; LABOR [160 h]; DUMP TRUCK DRIVER [160 h]; WATER TANKER DRIVER [144 h]; EXCAVATOR OPERATOR [160 h]; COMPACTOR [144 h]; COST [10580] | 10,580 |  |
| TAEXELCL040008 |  | Lighting Pole Installation with Luminares | 5d | 2027-04-21 | 2027-04-27 | TAEXELCL040006 |  |  |  |  | 75.41d | 36.36d | ELECTRACIAN [40 h]; CRANE [40 h]; CRANE OPERATOR [40 h]; COST [91500] | 91,500 |  |
| TAEXELCL040005 |  | Cables Pulling | 3d | 2027-05-01 | 2027-05-04 | TAEXELCL040002, TAEXELCL040003, TAEXELCL040004 |  |  |  |  | 61.75d | 0d | ELECTRACIAN [120 h]; LABOR [160 h]; COST [168000] | 168,000 |  |
| TAEXELCL040009 |  | Install Substation & RMU | 9d | 2027-05-04 | 2027-05-15 | TAEXELCL040005, TAPQDVEL0004 |  |  |  |  | 74.75d | 104.05d | ELECTRACIAN [40 h]; CRANE [40 h]; CRANE OPERATOR [40 h]; COST [180000] | 180,000 |  |
| TAEXELCL040007 |  | Earthing cables | 2d | 2027-07-05 | 2027-07-07 | TAEXELCL040006, TAEXELCL040005, TAEXELCL030007 |  |  |  |  | 8.05d | 0d | ELECTRACIAN [80 h]; LABOR [40 h]; COST [2320] | 2,320 |  |

| ID | WBS | Activity | Duration | Start | Finish | Predecessors | Complete | Remaining | Planned start | Planned finish | Total float | Free float | Resources | Cost | Actual cost |
| --- | --- | --- | --- | --- | --- | --- | --- | --- | --- | --- | --- | --- | --- | --- | --- |
|  | 3 | **Telecommunication Works** |  | 2026-06-30 | 2027-06-20 |  |  |  |  |  |  |  |  |  |  |
| TAEXTCCL040001 |  | Trench Cut off | 7d | 2026-06-30 A | 2027-04-11 | TAEXTCCL030001 | 2% | 6.86d | 2027-01-16 | 2027-01-24 | -17.61d | 0d | DUMP TRUCK [110 h]; EXCAVATOR [56 h]; LABOR [30 h]; DUMP TRUCK DRIVER [110 h]; EXCAVATOR OPERATOR [56 h]; COST [10250] | 10,250 | 205 |
| TAEXTCCL040002 |  | Drawpit and PVC Pipes Installation | 4d | 2026-07-04 A | 2026-07-05 A | TAEXTCCL040001, TAEXTCCL030002 | 100% |  | 2027-05-15 | 2027-05-19 |  |  | ELECTRACIAN [80 h]; EXCAVATOR [40 h]; LABOR [16 h]; EXCAVATOR OPERATOR [40 h]; COST [80250] | 80,250 | 80,250 |
| TAEXTCCL040003 |  | Road Crossing Ducts | 2d | 2026-07-04 A | 2026-07-05 A | TAEXTCCL040002 | 100% |  | 2027-05-19 | 2027-05-22 |  |  | DUMP TRUCK [32 h]; EXCAVATOR [16 h]; DUMP TRUCK DRIVER [32 h]; EXCAVATOR OPERATOR [16 h]; COST [8600] | 8,600 | 8,600 |
| TAEXTCCL040004 |  | Trench Backfilling | 10d | 2027-06-08 | 2027-06-20 | TAEXTCCL040003 |  |  |  |  | 28.73d | 7d | DUMP TRUCK [80 h]; WATER TANKER [40 h]; EXCAVATOR [60 h]; LABOR [80 h]; DUMP TRUCK DRIVER [80 h]; WATER TANKER DRIVER [40 h]; EXCAVATOR OPERATOR [60 h]; COMPACTOR [80 h]; COST [26430] | 26,430 |  |
|  | 4 | **CCTV Works** |  | 2027-02-02 | 2027-08-25 |  |  |  |  |  |  |  |  |  |  |
| TAEXCCCL040001 |  | Pipe Installation with manhole | 10d | 2027-02-02 | 2027-02-14 | TAEXCCCL030001 |  |  |  |  | -15.55d | 0d | ELECTRACIAN [96 h]; LABOR [192 h]; COST [5723] | 5,723 |  |
| TAEXCCCL040002 |  | CCTV Swiches Lighting panels Installation | 10d | 2027-07-17 | 2027-07-28 | TAEXCCCL040001, TAEXCCCL030002 SS |  |  |  |  | -15.55d | 0d | ELECTRACIAN [330 h]; EXCAVATOR [40 h]; LABOR [330 h]; EXCAVATOR OPERATOR [40 h]; COST [2578] | 2,578 |  |
| TAEXCCCL040003 |  | Cable laying and connected with Panels | 10d | 2027-07-28 | 2027-08-09 | TAEXCCCL040002 |  |  |  |  | -11.55d | 0d | ELECTRACIAN [160 h]; LABOR [320 h]; COST [18176] | 18,176 |  |
| TAEXCCCL040004 |  | Pole Installation with IP Outdoor CCTV POE Camera | 14d | 2027-08-09 | 2027-08-25 | TAEXCCCL040003 |  |  |  |  | -11.55d | 4.72d | ELECTRACIAN [112 h]; EXCAVATOR [60 h]; LABOR [112 h]; EXCAVATOR OPERATOR [60 h]; COST [4603] | 4,603 |  |
|  | 5 | **Potable Networks** |  | 2026-06-14 | 2026-07-08 |  |  |  |  |  |  |  |  |  |  |
| TAEXPTCL040001 |  | Excavation works for Trench | 6d | 2026-06-14 A | 2026-06-21 A | TAEXPTCL090001, TAEXPTCL030001 | 100% |  | 2026-08-15 | 2026-08-22 |  |  | DUMP TRUCK [80 h]; EXCAVATOR [40 h]; LABOR [10 h]; DUMP TRUCK DRIVER [80 h]; EXCAVATOR OPERATOR [40 h]; COST [57309.6] | 57,309.62 | 57,309.62 |
| TAEXPTCL040003 |  | Install Pipes & Fittings | 7d | 2026-06-22 A | 2026-06-23 A | TAEXPTCL040002, TAEXPTCL030003, TAEXTSCL040003 | 100% |  | 2026-08-19 | 2026-08-27 |  |  | LABOR [112 h]; PLUMBER [56 h]; COST [72350] | 72,350 | 72,350 |
| TAEXPTCL040002 |  | Bedding Works | 2d | 2026-06-22 A | 2026-06-23 A | TAEXPTCL040001 | 100% |  | 2026-08-10 | 2026-08-12 |  |  | DUMP TRUCK [16 h]; EXCAVATOR [16 h]; LABOR [32 h]; DUMP TRUCK DRIVER [16 h]; EXCAVATOR OPERATOR [16 h]; COST [7050] | 7,050 | 7,050 |
| TAEXPTCL040007 |  | Valve Chamber works | 21d | 2026-06-23 A | 2026-07-02 A | TAEXPTCL040006, TAEXPTCL030006 | 100% |  | 2026-12-05 | 2026-12-29 |  |  | WATER TANKER [30 h]; EXCAVATOR [56 h]; CONCRET MIXER [20 h]; LABOR [128 h]; WATER TANKER DRIVER [30 h]; EXCAVATOR OPERATOR [56 h]; PLUMBER [40 h]; STEEL FIXER [56 h]; CARPENTER [40 h]; MASON [40 h]; CONCRET MIXER OPERATOR [20 h]; COST [30250] | 30,250 | 30,250 |
| TAEXPTCL040004 |  | Backfilling Works for Trench | 13d | 2026-06-25 A | 2026-06-28 A | TAEXPTCL040003, TAEXTSCL040004 | 100% |  | 2026-08-16 | 2026-08-31 |  |  | DUMP TRUCK [208 h]; WATER TANKER [128 h]; EXCAVATOR [104 h]; LABOR [105 h]; DUMP TRUCK DRIVER [208 h]; WATER TANKER DRIVER [128 h]; EXCAVATOR OPERATOR [104 h]; COMPACTOR [86 h]; COST [37985.9] | 37,985.92 | 37,985.92 |
| TAEXPTCL040005 |  | Install Valves with fittings | 4d | 2026-06-27 A | 2026-06-30 A | TAEXPTCL040004 FF, TAPQDVPT00021 | 100% |  | 2026-09-20 | 2026-09-24 |  |  | LABOR [64 h]; PLUMBER [64 h]; COST [9600] | 9,600 | 9,600 |
| TAEXPTCL040006 |  | Install fire hydrent | 6d | 2026-06-28 A | 2026-06-30 A | TAEXPTCL040003, TAEXPTCL0500061 | 100% |  | 2026-10-10 | 2026-10-17 |  |  | LABOR [96 h]; PLUMBER [48 h]; COST [24000] | 24,000 | 24,000 |
| TAEXPTCL040008 |  | Inspection Test | 4d | 2026-07-08 A | 2026-07-08 A | TAEXPTCL040007 | 100% |  | 2026-10-12 | 2026-10-17 |  |  | WATER TANKER [32 h]; LABOR [32 h]; WATER TANKER DRIVER [32 h]; PLUMBER [32 h]; COST [4005] | 4,005 | 4,005 |
|  | 6 | **TSE Networks** |  | 2026-06-14 | 2026-08-20 |  |  |  |  |  |  |  |  |  |  |
| TAEXTSCL040001 |  | Excavation works for Trench | 5d | 2026-06-14 A | 2026-06-21 A | TAEXTSCC020001 | 100% |  | 2026-06-22 | 2026-06-27 |  |  | DUMP TRUCK [96 h]; EXCAVATOR [48 h]; LABOR [24 h]; DUMP TRUCK DRIVER [96 h]; EXCAVATOR OPERATOR [48 h]; COST [56703.3] | 56,703.34 | 56,703.34 |
| TAEXTSCL040002 |  | Bedding Works | 2d | 2026-06-21 A | 2026-06-23 A | TAEXTSCL040001, TAEXPTCL040002 | 100% |  | 2026-08-24 | 2026-08-26 |  |  | DUMP TRUCK [16 h]; EXCAVATOR [16 h]; LABOR [32 h]; DUMP TRUCK DRIVER [16 h]; EXCAVATOR OPERATOR [16 h]; COST [4000] | 4,000 | 4,000 |
| TAEXTSCL040003 |  | Install Pipes & Fittings | 7d | 2026-06-21 A | 2026-06-23 A | TAEXTSCL040002, TAEXTSCL030003 | 100% |  | 2026-08-26 | 2026-09-03 |  |  | LABOR [112 h]; PLUMBER [112 h]; COST [58930] | 58,930 | 58,930 |
| TAEXTSCL040006 |  | Valve Chamber works | 16d | 2026-06-23 A | 2026-07-02 A | TAEXTSCL040005, TAEXPTCL040007 | 100% |  | 2027-02-16 | 2027-03-07 |  |  | WATER TANKER [30 h]; EXCAVATOR [56 h]; CONCRET MIXER [60 h]; LABOR [128 h]; WATER TANKER DRIVER [30 h]; EXCAVATOR OPERATOR [56 h]; PLUMBER [40 h]; STEEL FIXER [40 h]; CARPENTER [40 h]; MASON [40 h]; CONCRET MIXER OPERATOR [60 h]; COST [40250] | 40,250 | 40,250 |
| TAEXTSCL040004 |  | Backfilling Works for Trench | 13d | 2026-06-25 A | 2026-07-02 A | TAEXTSCL040003 | 100% |  | 2026-08-01 | 2026-08-16 |  |  | DUMP TRUCK [56 h]; WATER TANKER [40 h]; EXCAVATOR [50 h]; LABOR [105 h]; DUMP TRUCK DRIVER [56 h]; WATER TANKER DRIVER [40 h]; EXCAVATOR OPERATOR [50 h]; COMPACTOR [30 h]; COST [23500] | 23,500 | 23,500 |
| TAEXTSCL040005 |  | Install Valves with fittings | 4d | 2026-06-28 A | 2026-06-30 A | TAEXTSCL040004 FF, TAEXTSCL0500051 | 100% |  | 2027-01-02 | 2027-01-06 |  |  | LABOR [64 h]; PLUMBER [64 h]; COST [6320] | 6,320 | 6,320 |
| TAEXTSCL040007 |  | Inspection Test | 4d | 2026-08-20 A | 2026-08-20 A | TAEXTSCL040006, TAEXPTCL040008 | 100% |  | 2026-08-22 | 2026-08-26 |  |  | WATER TANKER [32 h]; LABOR [64 h]; WATER TANKER DRIVER [32 h]; PLUMBER [64 h]; COST [3850] | 3,850 | 3,850 |

| ID | WBS | Activity | Duration | Start | Finish | Predecessors | Complete | Remaining | Planned start | Planned finish | Total float | Free float | Resources | Cost | Actual cost |
| --- | --- | --- | --- | --- | --- | --- | --- | --- | --- | --- | --- | --- | --- | --- | --- |
|  | 7 | **Sewerage Networks** |  | 2025-12-09 | 2026-05-23 |  |  |  |  |  |  |  |  |  |  |
| TAEXSWCL040001 |  | Excavation works for Trench | 18d | 2025-12-09 A | 2025-12-29 A | TAEXSWCC020001 | 100% |  |  |  |  |  | DUMP TRUCK [176 h]; EXCAVATOR [88 h]; LABOR [44 h]; DUMP TRUCK DRIVER [176 h]; EXCAVATOR OPERATOR [88 h]; COST [68350] | 68,350 | 68,350 |
| TAEXSWCL040002 |  | Bedding Works | 7d | 2025-12-30 A | 2026-01-06 A | TAEXSWCL040001 | 100% |  |  |  |  |  | DUMP TRUCK [24 h]; EXCAVATOR [24 h]; LABOR [48 h]; DUMP TRUCK DRIVER [24 h]; EXCAVATOR OPERATOR [24 h]; COST [23486.2] | 23,486.15 | 23,486.15 |
| TAEXSWCL040003 |  | Install GRP Pipes & Fittings | 94d | 2026-01-06 A | 2026-04-25 A | TAEXSWCL040002 | 100% |  |  |  |  |  | EXCAVATOR [64 h]; LABOR [128 h]; EXCAVATOR OPERATOR [64 h]; PLUMBER [64 h]; COST [98700] | 98,700 | 98,700 |
| TAEXSWCL040004 |  | Backfilling Works for Trench | 102d | 2026-01-21 A | 2026-05-19 A | TAEXSWCL040003 FF+15d | 100% |  |  |  |  |  | DUMP TRUCK [240 h]; WATER TANKER [120 h]; EXCAVATOR [120 h]; LABOR [120 h]; DUMP TRUCK DRIVER [240 h]; WATER TANKER DRIVER [120 h]; EXCAVATOR OPERATOR [120 h]; COMPACTOR [120 h]; COST [20590] | 20,590 | 20,590 |
| TAEXSWCL040005 |  | Manhole Installation with backfilling | 36d | 2026-04-12 A | 2026-05-23 A | TAEXSWCL040004 FF+10d, TAEXSWCL040003, TAPQDVSW0002 | 100% |  |  |  |  |  | DUMP TRUCK [72 h]; EXCAVATOR [56 h]; LABOR [72 h]; DUMP TRUCK DRIVER [72 h]; EXCAVATOR OPERATOR [56 h]; PLUMBER [72 h]; MASON [32 h]; COST [64200] | 64,200 | 64,200 |
| TAEXSWCL040006 |  | Leakage Test | 10d | 2026-05-09 A | 2026-05-19 A | TAEXSWCL040005 | 100% |  |  |  |  |  | WATER TANKER [24 h]; LABOR [48 h]; WATER TANKER DRIVER [24 h]; PLUMBER [24 h]; COST [26336.5] | 26,336.45 | 26,336.45 |
|  | 8 | **Storm Networks** |  | 2026-01-25 | 2026-08-30 |  |  |  |  |  |  |  |  |  |  |
| TAEXSTCL040001 |  | Excavation works for Trench | 7d | 2026-01-25 A | 2026-02-01 A | TAEXSTCL050001 | 100% |  |  |  |  |  | DUMP TRUCK [172 h]; EXCAVATOR [88 h]; LABOR [44 h]; DUMP TRUCK DRIVER [172 h]; EXCAVATOR OPERATOR [88 h]; COST [179189] | 179,189 | 179,189 |
| TAEXSTCL040002 |  | Bedding Works | 2d | 2026-02-21 A | 2026-02-22 A | TAEXSTCL040001 | 100% |  |  |  |  |  | DUMP TRUCK [16 h]; EXCAVATOR [16 h]; LABOR [48 h]; DUMP TRUCK DRIVER [16 h]; EXCAVATOR OPERATOR [16 h]; COST [79748] | 79,748.02 | 79,748.02 |
| TAEXSTCL040003 |  | Install GRP Pipes & Fittings | 6d | 2026-02-21 A | 2026-02-26 A | TAEXSTCL040002 FS+10d | 100% |  |  |  |  |  | EXCAVATOR [64 h]; LABOR [64 h]; EXCAVATOR OPERATOR [64 h]; PLUMBER [128 h]; COST [93698.5] | 93,698.5 | 93,698.5 |
| TAEXSTCL040005 |  | Manhole Installation with backfilling | 10d | 2026-04-21 A | 2026-05-02 A | TAEXSTCL040003 | 100% |  |  |  |  |  | DUMP TRUCK [105 h]; EXCAVATOR [104 h]; LABOR [208 h]; DUMP TRUCK DRIVER [105 h]; EXCAVATOR OPERATOR [104 h]; PLUMBER [104 h]; MASON [208 h]; COST [48668.5] | 48,668.5 | 48,668.5 |
| TAEXSTCL040004 |  | Backfilling Works for Trench | 10d | 2026-04-25 A | 2026-05-05 A | TAEXSTCL040003 | 100% |  |  |  |  |  | DUMP TRUCK [240 h]; WATER TANKER [120 h]; EXCAVATOR [120 h]; LABOR [240 h]; DUMP TRUCK DRIVER [240 h]; WATER TANKER DRIVER [120 h]; EXCAVATOR OPERATOR [120 h]; COMPACTOR [120 h]; COST [93385] | 93,385 | 93,385 |
| TAEXSTCL040007 |  | Leakage Test | 2d | 2026-05-23 A | 2026-05-24 A | TAEXSTCL040005 | 100% |  |  |  |  |  | WATER TANKER [24 h]; LABOR [24 h]; WATER TANKER DRIVER [24 h]; PLUMBER [24 h]; COST [10640] | 10,640 | 10,640 |
| TAEXSTCL0400011 |  | Excavation works for Trench Part 01 | 11d | 2026-06-06 A | 2026-06-20 A | TAEXSTCL040001, TAEXSTCL050001 | 100% |  | 2026-06-22 | 2026-07-04 |  |  | DUMP TRUCK [172 h]; EXCAVATOR [88 h]; LABOR [44 h]; DUMP TRUCK DRIVER [172 h]; EXCAVATOR OPERATOR [88 h]; COST [9431] | 9,431 | 9,431 |
| TAEXSTCL0400021 |  | Bedding Works Part 01 | 2d | 2026-06-06 A | 2026-06-21 A | TAEXSTCL040002, TAEXSTCL0400011, TAEXTSCL040002 | 100% |  | 2026-08-18 | 2026-08-20 |  |  | DUMP TRUCK [16 h]; EXCAVATOR [16 h]; LABOR [48 h]; DUMP TRUCK DRIVER [16 h]; EXCAVATOR OPERATOR [16 h]; COST [4197.26] | 4,197.26 | 4,197.26 |
| TAEXSTCL0400031 |  | Install GRP Pipes & Fittings Part 01 | 8d | 2026-06-23 A | 2026-06-24 A | TAEXSTCL040003, TAEXSTCL0400021 | 100% |  | 2026-08-13 | 2026-08-23 |  |  | EXCAVATOR [64 h]; LABOR [64 h]; EXCAVATOR OPERATOR [64 h]; PLUMBER [128 h]; COST [4931.5] | 4,931.5 | 4,931.5 |
| TAEXSTCL040006 |  | Install Catch Basin with UPVC Pipes & Fittings | 10d | 2026-06-26 A | 2026-07-05 A | TAEXSTCL030006, TAEXSTCL0400051 | 100% |  | 2026-11-19 | 2026-12-01 |  |  | EXCAVATOR [40 h]; LABOR [80 h]; EXCAVATOR OPERATOR [40 h]; PLUMBER [80 h]; COST [80200] | 80,200 | 80,200 |
| TAEXSTCL0400051 |  | Manhole Installation with backfilling Part 01 | 13d | 2026-06-27 A | 2026-06-28 A | TAEXSTCL0400041 FF+20d, TAEXSTCL040005, TAPQDVST00061 | 100% |  | 2026-11-04 | 2026-11-19 |  |  | DUMP TRUCK [105 h]; EXCAVATOR [104 h]; LABOR [208 h]; DUMP TRUCK DRIVER [105 h]; EXCAVATOR OPERATOR [104 h]; PLUMBER [104 h]; MASON [208 h]; COST [2561.5] | 2,561.5 | 2,561.5 |
| TAEXSTCL0400041 |  | Backfilling Works for Trench Part 01 | 15d | 2026-06-27 A | 2026-06-28 A | TAEXSTCL0400031 FF+25d, TAEXSTCL040004 | 100% |  | 2026-08-09 | 2026-08-26 |  |  | DUMP TRUCK [240 h]; WATER TANKER [120 h]; EXCAVATOR [120 h]; LABOR [240 h]; DUMP TRUCK DRIVER [240 h]; WATER TANKER DRIVER [120 h]; EXCAVATOR OPERATOR [120 h]; COMPACTOR [120 h]; COST [4915] | 4,915 | 4,915 |
| TAEXSTCL0400071 |  | Leakage Test Part 01 | 3d | 2026-07-08 A | 2026-08-30 A | TAEXSTCL040007, TAEXSTCL040006, TAEXTSCL040007 | 100% |  | 2026-11-21 | 2026-11-23 |  |  | WATER TANKER [24 h]; LABOR [24 h]; WATER TANKER DRIVER [24 h]; PLUMBER [24 h]; COST [560] | 560 | 560 |
|  | 2 | **Local Road 05** |  | 2025-10-11 | 2027-08-30 |  |  |  |  |  |  |  |  |  |  |
|  | 3 | **Road Works** |  | 2025-10-11 | 2027-06-24 |  |  |  |  |  |  |  |  |  |  |
| TAEXRDCL050001 |  | Road Excavation and Disposal | 56d | 2025-10-11 A | 2025-12-14 A | TAENSDRD0001 FS+42d, TAGNML0004 SS | 100% |  |  |  |  |  | DUMP TRUCK [320 h]; EXCAVATOR [160 h]; LABOR [80 h]; DUMP TRUCK DRIVER [320 h]; EXCAVATOR OPERATOR [160 h]; COST [293112] | 293,112 | 293,112 |
| TAEXRDCL050002 |  | Backfilling Works for Road | 3d | 2025-12-06 A | 2025-12-08 A | TAEXRDCL050001 | 100% |  |  |  |  |  | ROLEER [88 h]; DUMP TRUCK [176 h]; WATER TANKER [88 h]; EXCAVATOR [88 h]; GRADER [88 h]; LABOR [88 h]; GRADER OPERATOR [88 h]; DUMP TRUCK DRIVER [176 h]; WATER TANKER DRIVER [88 h]; EXCAVATOR OPERATOR [88 h]; ROLLER OPERATOR [88 h]; COST [155026] | 155,026 | 155,026 |
| TAEXRDCL050003 |  | Subgrade Works | 5d | 2026-06-21 A | 2026-07-21 A | TAEXRDCL050002, TAEXRDC L020004 | 100% |  | 2026-11-21 | 2026-11-26 |  |  | ROLEER [40 h]; DUMP TRUCK [40 h]; WATER TANKER [20 h]; EXCAVATOR [20 h]; GRADER [40 h]; LABOR [40 h]; GRADER OPERATOR [40 h]; DUMP TRUCK DRIVER [40 h]; WATER TANKER DRIVER [20 h]; EXCAVATOR OPERATOR [20 h]; ROLLER OPERATOR [40 h]; COST [95648.2] | 95,648.16 | 95,648.16 |
| TAEXRDCL050004 |  | ABC aggregate Base Course Works | 6d | 2026-07-04 A | 2026-08-06 A | TAEXRDCL050003, TAEXSTCL050006 FS+45d, TAPQDVRD00011 | 100% |  | 2026-12-17 | 2026-12-24 |  |  | ROLEER [64 h]; DUMP TRUCK [240 h]; WATER TANKER [64 h]; EXCAVATOR [64 h]; GRADER [64 h]; LABOR [64 h]; GRADER OPERATOR [64 h]; DUMP TRUCK DRIVER [240 h]; WATER TANKER DRIVER [64 h]; EXCAVATOR OPERATOR [64 h]; ROLLER OPERATOR [64 h]; COST [266839] | 266,839 | 266,839 |
| TAEXRDCL050005 |  | MBC1 layer | 1d | 2026-07-15 A | 2026-08-11 A | TAEXRDCL050004 | 100% |  | 2026-12-06 | 2026-12-07 |  |  | MC1 sprinker [8 h]; MC DRIVER [8 h]; COST [3650] | 3,650 | 3,650 |
| TAEXRDCL050006 |  | BBC Base Course | 2d | 2026-07-18 A | 2026-08-16 A | TAEXRDCL050005 | 100% |  | 2026-10-06 | 2026-10-08 |  |  | ROLEER [48 h]; DUMP TRUCK [72 h]; MILLING MACHINE [24 h]; WHEEL ROLLER [48 h]; LABOR [100 h]; DUMP TRUCK DRIVER [72 h]; MILLING MACHINE OPERATOR [24 h]; WHEEL ROLLER OPERATOR [48 h]; ROLLER OPERATOR [48 h]; COST [354278] | 354,278 | 354,278 |
| TAEXRDCL050008 |  | Precast Concret Kerps | 17d | 2026-09-20 A | 2026-12-13 | TAEXRDCL050006 | 95% | 0.85d | 2026-11-11 | 2026-12-01 | 143.61d | 129.71d | LABOR [540 h]; COST [345659] | 345,659 | 328,376.05 |
| TAEXRDCL050007 |  | BWC Asphalt Wearing Course with RC | 1d | 2027-05-30 | 2027-05-31 | TAEXRDCL050006, TAEXRDCL050008, TAEXRDC L020007 |  |  |  |  | 26.9d | 0d | ROLEER [16 h]; DUMP TRUCK [32 h]; MILLING MACHINE [8 h]; WHEEL ROLLER [16 h]; LABOR [40 h]; DUMP TRUCK DRIVER [32 h]; MILLING MACHINE OPERATOR [8 h]; WHEEL ROLLER OPERATOR [16 h]; ROLLER OPERATOR [16 h]; COST [1011511] | 1,011,511 |  |
| TAEXRDCL050009 |  | Precast Interlock Works | 15d | 2027-05-31 | 2027-06-17 | TAEXRDCL050008, TAEXRDCL050007 |  |  |  |  | 26.9d | 0d | LABOR [840 h]; COST [312407] | 312,407 |  |
| TAEXRDCL050010 |  | Stone Paving works | 3d | 2027-06-17 | 2027-06-21 | TAEXRDCL050009 |  |  |  |  | 26.9d | 0d | DUMP TRUCK [32 h]; LABOR [160 h]; DUMP TRUCK DRIVER [32 h]; COST [35000] | 35,000 |  |
| TAEXRDCL050011 |  | Road Marking | 1d | 2027-06-21 | 2027-06-22 | TAEXRDCL050010 |  |  |  |  | 26.9d | 0d | LABOR [32 h]; COST [4100] | 4,100 |  |
| TAEXRDCL050012 |  | Traffic Sinage | 2d | 2027-06-22 | 2027-06-24 | TAEXRDCL050011 |  |  |  |  | 26.9d | 25.06d | EXCAVATOR [8 h]; LABOR [32 h]; EXCAVATOR OPERATOR [8 h]; COST [42000] | 42,000 |  |

| ID | WBS | Activity | Duration | Start | Finish | Predecessors | Complete | Remaining | Planned start | Planned finish | Total float | Free float | Resources | Cost | Actual cost |
| --- | --- | --- | --- | --- | --- | --- | --- | --- | --- | --- | --- | --- | --- | --- | --- |
|  | 1 | **Electrical Works** |  | 2026-06-21 | 2027-07-10 |  |  |  |  |  |  |  |  |  |  |
| TAEXELCL050003 |  | Road Crossing Ducts | 2d | 2026-06-21 A | 2026-06-24 A | TAEXELCL050002 | 100% |  | 2027-03-25 | 2027-03-28 |  |  | DUMP TRUCK [40 h]; EXCAVATOR [40 h]; DUMP TRUCK DRIVER [40 h]; EXCAVATOR OPERATOR [40 h]; COST [260] | 260 | 260 |
| TAEXELCL050001 |  | Trench Cut off | 12d | 2026-06-22 A | 2027-03-25 | TAEXELCL040001 | 10% | 10.8d | 2027-01-02 | 2027-01-16 | -29.3d | 0d | DUMP TRUCK [160 h]; EXCAVATOR [96 h]; LABOR [48 h]; DUMP TRUCK DRIVER [160 h]; EXCAVATOR OPERATOR [96 h]; COST [27676.2] | 27,676.25 | 2,767.62 |
| TAEXELCL050002 |  | Drawpit and PVC Pipes Installation | 8d | 2026-06-23 A | 2026-06-24 A | TAEXELCL050001, TAPQDVEL0005 | 100% |  | 2027-03-09 | 2027-03-18 |  |  | ELECTRACIAN [80 h]; EXCAVATOR [40 h]; LABOR [80 h]; EXCAVATOR OPERATOR [40 h]; COST [4560] | 4,560 | 4,560 |
| TAEXELCL050004 |  | Trench Backfilling | 10d | 2027-04-14 | 2027-04-26 | TAEXELCL050003 |  |  |  |  | 67.05d | 0d | DUMP TRUCK [160 h]; WATER TANKER [144 h]; EXCAVATOR [160 h]; LABOR [160 h]; DUMP TRUCK DRIVER [160 h]; WATER TANKER DRIVER [144 h]; EXCAVATOR OPERATOR [160 h]; COMPACTOR [144 h]; COST [10560] | 10,560 |  |
| TAEXELCL050006 |  | Poles RC Foundation | 3d | 2027-04-14 | 2027-04-18 | TAEXELCL050002, TAPQDVEL0005 |  |  |  |  | 48.05d | 0d | EXCAVATOR [40 h]; LABOR [40 h]; EXCAVATOR OPERATOR [40 h]; COST [9510] | 9,510 |  |
| TAEXELCL050008 |  | Lighting Pole Installation with Luminares | 5d | 2027-04-18 | 2027-04-24 | TAEXELCL050006 |  |  |  |  | 48.05d | 9d | ELECTRACIAN [40 h]; CRANE [40 h]; CRANE OPERATOR [40 h]; COST [91500] | 91,500 |  |
| TAEXELCL050005 |  | Cables Pulling | 3d | 2027-04-26 | 2027-04-29 | TAEXELCL050002, TAEXELCL050003, TAEXELCL050004 |  |  |  |  | 67.05d | 59d | ELECTRACIAN [120 h]; LABOR [160 h]; COST [568000] | 568,000 |  |
| TAEXELCL050007 |  | Earthing cables | 2d | 2027-07-07 | 2027-07-10 | TAEXELCL050006, TAEXELCL050005, TAEXELCL040007 |  |  |  |  | 8.05d | 20.72d | ELECTRACIAN [80 h]; LABOR [40 h]; COST [2320] | 2,320 |  |
|  | 2 | **Telecommunication Works** |  | 2026-06-20 | 2027-06-20 |  |  |  |  |  |  |  |  |  |  |
| TAEXTCCL050002 |  | Drawpit and PVC Pipes Installation | 4d | 2026-06-20 A | 2026-06-21 A | TAEXTCCL050001, TAEXTCCL040002 | 100% |  | 2027-05-23 | 2027-05-27 |  |  | ELECTRACIAN [80 h]; EXCAVATOR [40 h]; LABOR [16 h]; EXCAVATOR OPERATOR [40 h]; COST [80250] | 80,250 | 80,250 |
| TAEXTCCL050003 |  | Road Crossing Ducts | 2d | 2026-06-22 A | 2026-06-24 A | TAEXTCCL050002 | 100% |  | 2027-05-16 | 2027-05-18 |  |  | DUMP TRUCK [32 h]; EXCAVATOR [16 h]; DUMP TRUCK DRIVER [32 h]; EXCAVATOR OPERATOR [16 h]; COST [8600] | 8,600 | 8,600 |
| TAEXTCCL050001 |  | Trench Cut off | 7d | 2026-06-22 A | 2027-04-19 | TAEXTCCL040001 | 4% | 6.72d | 2027-01-24 | 2027-02-01 | -17.61d | 0d | DUMP TRUCK [110 h]; EXCAVATOR [56 h]; LABOR [30 h]; DUMP TRUCK DRIVER [110 h]; EXCAVATOR OPERATOR [56 h]; COST [10250] | 10,250 | 410 |
| TAEXTCCL050004 |  | Trench Backfilling | 10d | 2027-06-08 | 2027-06-20 | TAEXTCCL050003 |  |  |  |  | 21.73d | 0d | DUMP TRUCK [48 h]; WATER TANKER [20 h]; EXCAVATOR [24 h]; LABOR [80 h]; DUMP TRUCK DRIVER [48 h]; WATER TANKER DRIVER [20 h]; EXCAVATOR OPERATOR [24 h]; COMPACTOR [40 h]; COST [26430] | 26,430 |  |
|  | 4 | **CCTV Works** |  | 2027-02-14 | 2027-08-30 |  |  |  |  |  |  |  |  |  |  |
| TAEXCCCL050001 |  | Pipe Installation with manhole | 10d | 2027-02-14 | 2027-02-25 | TAEXCCCL040001 |  |  |  |  | -15.55d | 0d | ELECTRACIAN [96 h]; LABOR [192 h]; COST [5723] | 5,723 |  |
| TAEXCCCL050002 |  | CCTV Swiches Lighting panels Installation | 10d | 2027-07-28 | 2027-08-09 | TAEXCCCL050001, TAEXCCCL040002 |  |  |  |  | -15.55d | 0d | ELECTRACIAN [330 h]; EXCAVATOR [40 h]; LABOR [330 h]; EXCAVATOR OPERATOR [40 h]; COST [2578] | 2,578 |  |
| TAEXCCCL050003 |  | Cable laying and connected with Panels | 10d | 2027-08-09 | 2027-08-21 | TAEXCCCL050002 |  |  |  |  | -15.55d | 0d | ELECTRACIAN [160 h]; LABOR [320 h]; COST [18176] | 18,176 |  |
| TAEXCCCL050004 |  | Pole Installation with IP Outdoor CCTV POE Camera | 8d | 2027-08-21 | 2027-08-30 | TAEXCCCL050003 |  |  |  |  | -15.55d | 0d | ELECTRACIAN [112 h]; EXCAVATOR [60 h]; LABOR [112 h]; EXCAVATOR OPERATOR [60 h]; COST [4603] | 4,603 |  |
|  | 5 | **Potable Networks** |  | 2026-04-30 | 2026-07-05 |  |  |  |  |  |  |  |  |  |  |
| TAEXPTCL050001 |  | Excavation works for Trench | 13d | 2026-04-30 A | 2026-05-15 A | TAEXPTCC030001 | 100% |  | 2026-04-30 | 2026-05-14 |  |  | DUMP TRUCK [96 h]; EXCAVATOR [96 h]; LABOR [96 h]; DUMP TRUCK DRIVER [96 h]; EXCAVATOR OPERATOR [96 h]; COST [57309.6] | 57,309.62 | 57,309.62 |
| TAEXPTCL050002 |  | Bedding Works | 7d | 2026-05-10 A | 2026-05-17 A | TAEXPTCL050001 | 100% |  |  |  |  |  | DUMP TRUCK [16 h]; EXCAVATOR [16 h]; LABOR [32 h]; DUMP TRUCK DRIVER [16 h]; EXCAVATOR OPERATOR [16 h]; COST [22735.9] | 22,735.92 | 22,735.92 |
| TAEXPTCL050003 |  | Install Pipes & Fittings | 8d | 2026-05-14 A | 2026-05-23 A | TAEXPTCL050002 | 100% |  |  |  |  |  | LABOR [112 h]; PLUMBER [56 h]; COST [92350] | 92,350 | 92,350 |
| TAEXPTCL050004 |  | Backfilling Works for Trench | 13d | 2026-05-19 A | 2026-06-02 A | TAEXPTCL050003 | 100% |  |  |  |  |  | DUMP TRUCK [208 h]; WATER TANKER [128 h]; EXCAVATOR [104 h]; LABOR [105 h]; DUMP TRUCK DRIVER [208 h]; WATER TANKER DRIVER [128 h]; EXCAVATOR OPERATOR [104 h]; COMPACTOR [86 h]; COST [22100] | 22,100 | 22,100 |
| TAEXPTCL050005 |  | Install Valves with fittings | 3d | 2026-05-19 A | 2026-05-21 A | TAEXPTCL050004 FF, TAEXPTCL020005 | 100% |  |  |  |  |  | LABOR [64 h]; PLUMBER [64 h]; COST [9120] | 9,120 | 9,120 |
| TAEXPTCL050006 |  | Install fire hydrent | 2d | 2026-05-24 A | 2026-05-25 A | TAEXPTCL050003 | 100% |  |  |  |  |  | LABOR [96 h]; PLUMBER [48 h]; COST [7200] | 7,200 | 7,200 |
| TAEXPTCL050007 |  | Valve Chamber works | 7d | 2026-05-24 A | 2026-05-31 A | TAEXPTCL050006 | 100% |  |  |  |  |  | WATER TANKER [30 h]; EXCAVATOR [28 h]; CONCRET MIXER [32 h]; LABOR [128 h]; WATER TANKER DRIVER [30 h]; EXCAVATOR OPERATOR [28 h]; PLUMBER [56 h]; STEEL FIXER [56 h]; CARPENTER [40 h]; MASON [56 h]; CONCRET MIXER OPERATOR [32 h]; COST [16100] | 16,100 | 16,100 |
| TAEXPTCL0500051 |  | Install Valves with fittings Part 01 | 24d | 2026-06-06 A | 2026-06-20 A | TAEXPTCL050005, TAPQDVPT00021 | 100% |  | 2026-09-30 | 2026-10-28 |  |  | LABOR [64 h]; PLUMBER [64 h]; COST [480] | 480 | 480 |
| TAEXPTCL0500061 |  | Install fire hydrent Part 01 | 2d | 2026-06-06 A | 2026-06-14 A | TAEXPTCL050006, TAEXPTCL0500051, TAEXPTCL0200061 | 100% |  | 2026-11-14 | 2026-11-16 |  |  | LABOR [96 h]; PLUMBER [48 h]; COST [16800] | 16,800 | 16,800 |
| TAEXPTCL0500071 |  | Valve Chamber works Part 01 | 9d | 2026-06-06 A | 2026-06-20 A | TAEXPTCL050007, TAEXPTCL0500061 | 100% |  | 2026-11-16 | 2026-11-26 |  |  | WATER TANKER [30 h]; EXCAVATOR [28 h]; CONCRET MIXER [32 h]; LABOR [128 h]; WATER TANKER DRIVER [30 h]; EXCAVATOR OPERATOR [28 h]; PLUMBER [56 h]; STEEL FIXER [56 h]; CARPENTER [40 h]; MASON [56 h]; CONCRET MIXER OPERATOR [32 h]; COST [24150] | 24,150 | 24,150 |
| TAEXPTCL050008 |  | Inspection Test | 4d | 2026-07-02 A | 2026-07-05 A | TAEXPTCL0500071, TAEXPTCL020008 | 100% |  | 2027-03-18 | 2027-03-23 |  |  | WATER TANKER [32 h]; LABOR [32 h]; WATER TANKER DRIVER [32 h]; PLUMBER [32 h]; COST [4005] | 4,005 | 4,005 |

| ID | WBS | Activity | Duration | Start | Finish | Predecessors | Complete | Planned start | Planned finish | Resources | Cost | Actual cost |
| --- | --- | --- | --- | --- | --- | --- | --- | --- | --- | --- | --- | --- |
|  | 6 | **TSE Networks** |  | 2026-05-09 | 2026-07-05 |  |  |  |  |  |  |  |
| TAEXTSCL050001 |  | Excavation works for Trench | 4d | 2026-05-09 A | 2026-05-12 A | TAEXTSCL020001 | 100% |  |  | DUMP TRUCK [96 h]; EXCAVATOR [48 h]; LABOR [24 h]; DUMP TRUCK DRIVER [96 h]; EXCAVATOR OPERATOR [48 h]; COST [66703.3] | 66,703.34 | 66,703.34 |
| TAEXTSCL050002 |  | Bedding Works | 3d | 2026-05-17 A | 2026-05-19 A | TAEXTSCL050001 | 100% |  |  | DUMP TRUCK [16 h]; EXCAVATOR [16 h]; LABOR [32 h]; DUMP TRUCK DRIVER [16 h]; EXCAVATOR OPERATOR [16 h]; COST [4000] | 4,000 | 4,000 |
| TAEXTSCL050003 |  | Install Pipes & Fittings | 2d | 2026-05-19 A | 2026-05-20 A | TAEXTSCL050002 | 100% |  |  | LABOR [112 h]; PLUMBER [112 h]; COST [68930] | 68,930 | 68,930 |
| TAEXTSCL050005 |  | Install Valves with fittings | 3d | 2026-05-19 A | 2026-05-21 A | TAEXTSCL050004 FF, TAEXTSCL020005 | 100% |  |  | LABOR [64 h]; PLUMBER [64 h]; COST [6004] | 6,004 | 6,004 |
| TAEXTSCL050004 |  | Backfilling Works for Trench | 10d | 2026-05-23 A | 2026-06-02 A | TAEXTSCL050003 | 100% |  |  | DUMP TRUCK [60 h]; WATER TANKER [24 h]; EXCAVATOR [32 h]; LABOR [105 h]; DUMP TRUCK DRIVER [60 h]; WATER TANKER DRIVER [24 h]; EXCAVATOR OPERATOR [32 h]; COMPACTOR [24 h]; COST [22400] | 22,400 | 22,400 |
| TAEXTSCL050006 |  | Valve Chamber works | 8d | 2026-05-24 A | 2026-06-01 A | TAEXTSCL050005 | 100% |  |  | WATER TANKER [20 h]; EXCAVATOR [18 h]; CONCRET MIXER [28 h]; LABOR [128 h]; WATER TANKER DRIVER [20 h]; EXCAVATOR OPERATOR [18 h]; PLUMBER [56 h]; STEEL FIXER [56 h]; CARPENTER [36 h]; MASON [56 h]; CONCRET MIXER OPERATOR [28 h]; COST [18112.5] | 18,112.5 | 18,112.5 |
| TAEXTSCL0500051 |  | Install Valves with fittings Part 01 | 2d | 2026-06-06 A | 2026-06-20 A | TAEXTSCL0200051 | 100% | 2027-02-27 | 2027-03-01 | LABOR [64 h]; PLUMBER [64 h]; COST [316] | 316 | 316 |
| TAEXTSCL0500061 |  | Valve Chamber works Part 01 | 8d | 2026-06-06 A | 2026-06-20 A | TAEXTSCL050006, TAEXTSCL0500051 | 100% | 2027-03-01 | 2027-03-10 | WATER TANKER [20 h]; EXCAVATOR [18 h]; CONCRET MIXER [28 h]; LABOR [128 h]; WATER TANKER DRIVER [20 h]; EXCAVATOR OPERATOR [18 h]; PLUMBER [56 h]; STEEL FIXER [56 h]; CARPENTER [36 h]; MASON [56 h]; CONCRET MIXER OPERATOR [28 h]; COST [22137.5] | 22,137.5 | 22,137.5 |
| TAEXTSCL050007 |  | Inspection Test | 4d | 2026-07-02 A | 2026-07-05 A | TAEXTSCL0500061, TAEXPTCL050008 | 100% | 2027-03-23 | 2027-03-28 | WATER TANKER [32 h]; LABOR [64 h]; WATER TANKER DRIVER [32 h]; PLUMBER [64 h]; COST [3850] | 3,850 | 3,850 |
|  | 7 | **Sewerage Networks** |  | 2025-12-25 | 2026-06-30 |  |  |  |  |  |  |  |
| TAEXSWCL050001 |  | Excavation works for Trench | 23d | 2025-12-25 A | 2026-01-20 A | TAEXSWCL030001 | 100% |  |  | DUMP TRUCK [176 h]; EXCAVATOR [88 h]; LABOR [44 h]; DUMP TRUCK DRIVER [176 h]; EXCAVATOR OPERATOR [88 h]; COST [68350] | 68,350 | 68,350 |
| TAEXSWCL050002 |  | Bedding Works | 15d | 2026-01-04 A | 2026-01-20 A | TAEXSWCL050001 | 100% |  |  | DUMP TRUCK [16 h]; EXCAVATOR [16 h]; LABOR [48 h]; DUMP TRUCK DRIVER [16 h]; EXCAVATOR OPERATOR [16 h]; COST [23486] | 23,486 | 23,486 |
| TAEXSWCL050003 |  | Install GRP Pipes & Fittings | 5d | 2026-01-04 A | 2026-01-08 A | TAEXSWCL050002 | 100% |  |  | EXCAVATOR [64 h]; LABOR [128 h]; EXCAVATOR OPERATOR [64 h]; PLUMBER [64 h]; COST [96726] | 96,726 | 96,726 |
| TAEXSWCL050004 |  | Backfilling Works for Trench | 13d | 2026-01-21 A | 2026-02-04 A | TAEXSWCL050003 | 100% |  |  | DUMP TRUCK [240 h]; WATER TANKER [120 h]; EXCAVATOR [120 h]; LABOR [120 h]; DUMP TRUCK DRIVER [240 h]; WATER TANKER DRIVER [120 h]; EXCAVATOR OPERATOR [120 h]; COMPACTOR [120 h]; COST [20580] | 20,580 | 20,580 |
| TAEXSWCL050005 |  | Manhole Installation with backfilling | 10d | 2026-04-11 A | 2026-04-21 A | TAEXSWCL050003 | 100% |  |  | DUMP TRUCK [104 h]; EXCAVATOR [104 h]; LABOR [208 h]; DUMP TRUCK DRIVER [104 h]; EXCAVATOR OPERATOR [104 h]; PLUMBER [104 h]; MASON [32 h]; COST [57780] | 57,780 | 57,780 |
| TAEXSWCL050006 |  | Leakage Test | 2d | 2026-05-06 A | 2026-05-07 A | TAEXSWCL050005 | 100% |  |  | WATER TANKER [24 h]; LABOR [48 h]; WATER TANKER DRIVER [24 h]; PLUMBER [24 h]; COST [24409.7] | 24,409.73 | 24,409.73 |
| TAEXSWCL0500031 |  | Install GRP Pipes & Fittings Part 01 | 5d | 2026-06-06 A | 2026-06-07 A | TAEXSWCL050003, TAEXTSCL0500051 | 100% | 2027-03-01 | 2027-03-07 | EXCAVATOR [64 h]; LABOR [128 h]; EXCAVATOR OPERATOR [64 h]; PLUMBER [64 h]; COST [1974] | 1,974 | 1,974 |
| TAEXSWCL0500051 |  | Manhole Installation with backfilling Part 01 | 8d | 2026-06-06 A | 2026-06-24 A | TAEXSWCL0500041 FF+10d, TAEXSWCL050005, TAPQDVSW00021 | 100% | 2027-03-15 | 2027-03-24 | DUMP TRUCK [104 h]; EXCAVATOR [104 h]; LABOR [208 h]; DUMP TRUCK DRIVER [104 h]; EXCAVATOR OPERATOR [104 h]; PLUMBER [104 h]; MASON [32 h]; COST [6420] | 6,420 | 6,420 |
| TAEXSWCL0500041 |  | Backfilling Works for Trench Part 01 | 5d | 2026-06-27 A | 2026-06-28 A | TAEXSWCL0500031, TAEXSWCL050004 | 100% | 2027-01-02 | 2027-01-07 | DUMP TRUCK [240 h]; WATER TANKER [120 h]; EXCAVATOR [120 h]; LABOR [120 h]; DUMP TRUCK DRIVER [240 h]; WATER TANKER DRIVER [120 h]; EXCAVATOR OPERATOR [120 h]; COMPACTOR [120 h]; COST [420] | 420 | 420 |
| TAEXSWCL0500061 |  | Leakage Test Part 01 | 2d | 2026-06-29 A | 2026-06-30 A | TAEXSWCL050006, TAEXSWCL0500051, TAEXTSCL050007 | 100% | 2027-03-27 | 2027-03-29 | WATER TANKER [24 h]; LABOR [48 h]; WATER TANKER DRIVER [24 h]; PLUMBER [24 h]; COST [1284.72] | 1,284.72 | 1,284.72 |
|  | 8 | **Storm Networks** |  | 2026-01-24 | 2026-06-30 |  |  |  |  |  |  |  |
| TAEXSTCL050001 |  | Excavation works for Trench | 52d | 2026-01-24 A | 2026-03-24 A | TAEXSTCL020001 | 100% |  |  | DUMP TRUCK [172 h]; EXCAVATOR [88 h]; LABOR [44 h]; DUMP TRUCK DRIVER [172 h]; EXCAVATOR OPERATOR [88 h]; COST [88620] | 88,620 | 88,620 |
| TAEXSTCL050002 |  | Bedding Works | 30d | 2026-02-18 A | 2026-03-24 A | TAEXSTCL050001 | 100% |  |  | DUMP TRUCK [16 h]; EXCAVATOR [16 h]; LABOR [48 h]; DUMP TRUCK DRIVER [16 h]; EXCAVATOR OPERATOR [16 h]; COST [83945.3] | 83,945.28 | 83,945.28 |
| TAEXSTCL050003 |  | Install GRP Pipes & Fittings | 56d | 2026-02-19 A | 2026-04-25 A | TAEXSTCL050002 | 100% |  |  | EXCAVATOR [64 h]; LABOR [64 h]; EXCAVATOR OPERATOR [64 h]; PLUMBER [128 h]; COST [98630] | 98,630 | 98,630 |
| TAEXSTCL050004 |  | Backfilling Works for Trench | 48d | 2026-03-23 A | 2026-05-17 A | TAEXSTCL050003 FF+15d | 100% |  |  | DUMP TRUCK [240 h]; WATER TANKER [120 h]; EXCAVATOR [120 h]; LABOR [60 h]; DUMP TRUCK DRIVER [240 h]; WATER TANKER DRIVER [120 h]; EXCAVATOR OPERATOR [120 h]; COMPACTOR [120 h]; COST [98300] | 98,300 | 98,300 |
| TAEXSTCL050005 |  | Manhole Installation with backfilling | 11d | 2026-03-23 A | 2026-04-04 A | TAEXSTCL050004 FF+10d, TAEXSTCL050003 | 100% |  |  | DUMP TRUCK [105 h]; EXCAVATOR [104 h]; LABOR [208 h]; DUMP TRUCK DRIVER [105 h]; EXCAVATOR OPERATOR [104 h]; PLUMBER [104 h]; MASON [208 h]; COST [96168.5] | 96,168.5 | 96,168.5 |
| TAEXSTCL0500051 |  | Manhole Installation with backfilling Part 01 | 8d | 2026-06-06 A | 2026-06-08 A | TAEXSTCL050005, TAPQDVST00061 | 100% | 2026-11-07 | 2026-11-16 | DUMP TRUCK [105 h]; EXCAVATOR [104 h]; LABOR [208 h]; DUMP TRUCK DRIVER [105 h]; EXCAVATOR OPERATOR [104 h]; PLUMBER [104 h]; MASON [208 h]; COST [5061.5] | 5,061.5 | 5,061.5 |
| TAEXSTCL050007 |  | Leakage Test | 3d | 2026-06-06 A | 2026-06-30 A | TAEXSTCL050006, TAEXSTCL0500051, TAEXSWCL0500061 | 100% | 2027-05-01 | 2027-05-04 | WATER TANKER [24 h]; LABOR [24 h]; WATER TANKER DRIVER [24 h]; PLUMBER [24 h]; COST [11200] | 11,200 | 11,200 |
| TAEXSTCL050006 |  | Install Catch Basin with UPVC Pipes & Fittings | 10d | 2026-06-09 A | 2026-06-20 A | TAEXSTCL0200061, TAEXSTCL0500051 | 100% | 2026-11-16 | 2026-11-28 | EXCAVATOR [40 h]; LABOR [80 h]; EXCAVATOR OPERATOR [40 h]; PLUMBER [160 h]; COST [80200] | 80,200 | 80,200 |

| ID | WBS | Activity | Duration | Start | Finish | Predecessors | Complete | Remaining | Planned start | Planned finish | Total float | Free float | Resources | Cost | Actual cost |
| --- | --- | --- | --- | --- | --- | --- | --- | --- | --- | --- | --- | --- | --- | --- | --- |
|  | 11 | **ZONE 3** |  | 2025-09-04 | 2027-09-29 |  |  |  |  |  |  |  |  |  |  |
|  | 1 | **Local Road 01** |  | 2026-01-25 | 2027-08-05 |  |  |  |  |  |  |  |  |  |  |
|  | 12 | **Road Works** |  | 2026-01-25 | 2027-06-15 |  |  |  |  |  |  |  |  |  |  |
| TAEXRDCL010001 |  | Road Excavation and Disposal | 111d | 2026-01-25 A | 2026-06-02 A | TAEXRDCL040001 | 100% |  |  |  |  |  | DUMP TRUCK [320 h]; EXCAVATOR [160 h]; LABOR [80 h]; DUMP TRUCK DRIVER [320 h]; EXCAVATOR OPERATOR [160 h]; COST [116390] | 116,390 | 116,390 |
| TAEXRDCL010002 |  | Backfilling Works for Road | 105d | 2026-02-01 A | 2026-06-02 A | TAEXRDCL010001 | 100% |  |  |  |  |  | ROLEER [112 h]; DUMP TRUCK [224 h]; WATER TANKER [112 h]; EXCAVATOR [112 h]; GRADER [112 h]; LABOR [112 h]; GRADER OPERATOR [112 h]; DUMP TRUCK DRIVER [224 h]; WATER TANKER DRIVER [112 h]; EXCAVATOR OPERATOR [112 h]; ROLLER OPERATOR [112 h]; COST [197305] | 197,305 | 197,305 |
| TAEXRDCL010003 |  | Subgrade Works | 4d | 2026-02-12 A | 2026-02-16 A | TAEXRDCL010002 | 100% |  |  |  |  |  | ROLEER [56 h]; DUMP TRUCK [110 h]; WATER TANKER [56 h]; EXCAVATOR [56 h]; GRADER [56 h]; LABOR [56 h]; GRADER OPERATOR [56 h]; DUMP TRUCK DRIVER [110 h]; WATER TANKER DRIVER [56 h]; EXCAVATOR OPERATOR [56 h]; ROLLER OPERATOR [56 h]; COST [30667.3] | 30,667.29 | 30,667.29 |
| TAEXRDCL010004 |  | ABC aggregate Base Course Works | 8d | 2026-08-23 A | 2027-02-18 | TAEXSTCL010007 FS+44d, TAEXRDCL0100031, TAPQDVRD00011 | 84% | 1.28d | 2026-12-27 | 2027-01-05 | 54.79d | 0d | ROLEER [64 h]; DUMP TRUCK [240 h]; WATER TANKER [64 h]; EXCAVATOR [64 h]; GRADER [64 h]; LABOR [64 h]; GRADER OPERATOR [64 h]; DUMP TRUCK DRIVER [240 h]; WATER TANKER DRIVER [64 h]; EXCAVATOR OPERATOR [64 h]; ROLLER OPERATOR [64 h]; COST [355786] | 355,786 | 298,860.24 |
| TAEXRDCL0100031 |  | Subgrade Works Part 01 | 3d | 2026-08-23 A | 2026-08-30 A | TAEXRDCL010003, TAEXRDCL030003 | 100% |  | 2026-10-19 | 2026-10-22 |  |  | ROLEER [56 h]; DUMP TRUCK [110 h]; WATER TANKER [56 h]; EXCAVATOR [56 h]; GRADER [56 h]; LABOR [56 h]; GRADER OPERATOR [56 h]; DUMP TRUCK DRIVER [110 h]; WATER TANKER DRIVER [56 h]; EXCAVATOR OPERATOR [56 h]; ROLLER OPERATOR [56 h]; COST [5411.87] | 5,411.87 | 5,411.87 |
| TAEXRDCL010005 |  | MBC1 layer | 1d | 2026-09-06 A | 2027-02-20 | TAEXRDCL010004 | 84% | 0.16d | 2027-01-09 | 2027-01-10 | 54.79d | 0d | MC1 sprinker [8 h]; MC DRIVER [8 h]; COST [7120] | 7,120 | 5,980.8 |
| TAEXRDCL010006 |  | BBC Base Course | 3d | 2026-09-10 A | 2027-02-20 | TAEXRDCL010005 | 84% | 0.48d | 2027-01-19 | 2027-01-23 | 54.79d | 52.29d | ROLEER [48 h]; DUMP TRUCK [72 h]; MILLING MACHINE [24 h]; WHEEL ROLLER [48 h]; LABOR [100 h]; DUMP TRUCK DRIVER [72 h]; MILLING MACHINE OPERATOR [24 h]; WHEEL ROLLER OPERATOR [48 h]; ROLLER OPERATOR [48 h]; COST [306417] | 306,417 | 257,390.28 |
| TAEXRDCL010008 |  | Precast Concret Kerps | 14d | 2026-10-04 A | 2027-04-28 | TAEXRDCL010006, TAEXRDCL040008 SS | 60% | 5.6d | 2027-04-14 | 2027-05-01 | 2.5d | 0d | LABOR [210 h]; COST [401420] | 401,420 | 240,852 |
| TAEXRDCL010007 |  | BWC Asphalt Wearing Course with RC | 1d | 2027-04-28 | 2027-04-29 | TAEXRDCL010006, TAEXRDCL010008 |  |  |  |  | 41.5d | 0d | ROLEER [16 h]; DUMP TRUCK [32 h]; MILLING MACHINE [8 h]; WHEEL ROLLER [16 h]; LABOR [40 h]; DUMP TRUCK DRIVER [32 h]; MILLING MACHINE OPERATOR [8 h]; WHEEL ROLLER OPERATOR [16 h]; ROLLER OPERATOR [16 h]; COST [611511] | 611,511 |  |
| TAEXRDCL010009 |  | Precast Interlock Works | 15d | 2027-05-20 | 2027-06-07 | TAEXRDCL010008, TAEXRDCL010007 FS+18d |  |  |  |  | 41.5d | 0d | LABOR [240 h]; COST [675671] | 675,671 |  |
| TAEXRDCL010010 |  | Stone Paving works | 4d | 2027-06-07 | 2027-06-12 | TAEXRDCL010009 |  |  |  |  | 41.5d | 0d | DUMP TRUCK [160 h]; LABOR [320 h]; DUMP TRUCK DRIVER [160 h]; COST [38120] | 38,120 |  |
| TAEXRDCL010011 |  | Road Marking | 1d | 2027-06-12 | 2027-06-13 | TAEXRDCL010010 |  |  |  |  | 41.5d | 0d | LABOR [32 h]; COST [6148] | 6,148 |  |
| TAEXRDCL010012 |  | Traffic Sinage | 2d | 2027-06-13 | 2027-06-15 | TAEXRDCL010011 |  |  |  |  | 41.5d | 39.66d | EXCAVATOR [8 h]; LABOR [32 h]; EXCAVATOR OPERATOR [8 h]; COST [42650] | 42,650 |  |
|  | 1 | **Electrical Works** |  | 2026-08-29 | 2027-08-05 |  |  |  |  |  |  |  |  |  |  |
| TAEXELCL010002 |  | Road Crossing Ducts | 4d | 2026-08-29 A | 2027-05-27 | TAEXELCL010003 | 29% | 2.84d | 2027-05-02 | 2027-05-06 | -12.67d | 0d | DUMP TRUCK [80 h]; EXCAVATOR [40 h]; DUMP TRUCK DRIVER [80 h]; EXCAVATOR OPERATOR [40 h]; COST [260] | 260 | 75.4 |
| TAEXELCL010003 |  | Drawpit and PVC Pipes Installation | 8d | 2026-08-29 A | 2027-05-24 | TAEXELCL010001, TAPQDVEL0005 | 29% | 5.68d | 2027-04-22 | 2027-05-02 | -12.67d | 0d | ELECTRACIAN [80 h]; EXCAVATOR [40 h]; LABOR [80 h]; EXCAVATOR OPERATOR [40 h]; COST [4560] | 4,560 | 1,322.4 |
| TAEXELCL010001 |  | Trench Cut off | 12d | 2027-05-04 | 2027-05-18 | TAEXELCU120001 |  |  |  |  | -29.3d | 0d | DUMP TRUCK [160 h]; EXCAVATOR [96 h]; LABOR [48 h]; DUMP TRUCK DRIVER [160 h]; EXCAVATOR OPERATOR [96 h]; COST [32386.2] | 32,386.25 |  |
| TAEXELCL010006 |  | Poles RC Foundation | 3d | 2027-05-24 | 2027-05-27 | TAEXELCL010003, TAPQDVEL0005 |  |  |  |  | 45.17d | 0d | EXCAVATOR [40 h]; LABOR [40 h]; EXCAVATOR OPERATOR [40 h]; COST [39510] | 39,510 |  |
| TAEXELCL010004 |  | Trench Backfilling | 10d | 2027-05-27 | 2027-06-08 | TAEXELCL010002 |  |  |  |  | -12.67d | 0d | DUMP TRUCK [160 h]; WATER TANKER [144 h]; EXCAVATOR [160 h]; LABOR [160 h]; DUMP TRUCK DRIVER [160 h]; WATER TANKER DRIVER [144 h]; EXCAVATOR OPERATOR [160 h]; COMPACTOR [144 h]; COST [10530] | 10,530 |  |
| TAEXELCL010008 |  | Lighting Pole Installation with Luminares | 5d | 2027-05-27 | 2027-06-02 | TAEXELCL010006 |  |  |  |  | 51.17d | 80.47d | ELECTRACIAN [40 h]; CRANE [40 h]; CRANE OPERATOR [40 h]; COST [91500] | 91,500 |  |
| TAEXELCL010005 |  | Cables Pulling | 3d | 2027-07-31 | 2027-08-03 | TAEXELCL010003, TAEXELCL010002, TAEXELCL010004 FS+45d |  |  |  |  | -12.67d | 0d | ELECTRACIAN [120 h]; LABOR [160 h]; COST [368000] | 368,000 |  |
| TAEXELCL010007 |  | Earthing cables | 2d | 2027-08-03 | 2027-08-05 | TAEXELCL010006, TAEXELCL010005, TAEXELCL050007 |  |  |  |  | -12.67d | 10.48d | ELECTRACIAN [80 h]; LABOR [40 h]; COST [2320] | 2,320 |  |

| ID | WBS | Activity | Duration | Start | Finish | Predecessors | Complete | Remaining | Planned start | Planned finish | Total float | Free float | Resources | Cost | Actual cost |
| --- | --- | --- | --- | --- | --- | --- | --- | --- | --- | --- | --- | --- | --- | --- | --- |
|  | 2 | **Telecommunication Works** |  | 2027-05-12 | 2027-06-27 |  |  |  |  |  |  |  |  |  |  |
| TAEXTCCL010001 |  | Trench Cut off | 7d | 2027-05-12 | 2027-05-20 | TAEXTCCU120001 |  |  |  |  | -17.61d | 0d | DUMP TRUCK [110 h]; EXCAVATOR [56 h]; LABOR [28 h]; DUMP TRUCK DRIVER [110 h]; EXCAVATOR OPERATOR [56 h]; COST [10250] | 10,250 |  |
| TAEXTCCL010002 |  | Drawpit and PVC Pipes Installation | 4d | 2027-06-08 | 2027-06-13 | TAEXTCCL010001, TAEXTCCL050002 |  |  |  |  | -20.27d | 0d | ELECTRACIAN [80 h]; EXCAVATOR [40 h]; LABOR [16 h]; EXCAVATOR OPERATOR [40 h]; COST [80250] | 80,250 |  |
| TAEXTCCL010003 |  | Road Crossing Ducts | 2d | 2027-06-13 | 2027-06-15 | TAEXTCCL010002 |  |  |  |  | 29.73d | 0d | DUMP TRUCK [40 h]; EXCAVATOR [16 h]; DUMP TRUCK DRIVER [40 h]; EXCAVATOR OPERATOR [16 h]; COST [8600] | 8,600 |  |
| TAEXTCCL010004 |  | Trench Backfilling | 10d | 2027-06-15 | 2027-06-27 | TAEXTCCL010003 |  |  |  |  | 29.73d | 50d | DUMP TRUCK [60 h]; WATER TANKER [24 h]; EXCAVATOR [30 h]; LABOR [60 h]; DUMP TRUCK DRIVER [60 h]; WATER TANKER DRIVER [24 h]; EXCAVATOR OPERATOR [30 h]; COMPACTOR [40 h]; COST [26430] | 26,430 |  |
|  | 16 | **CCTV Works** |  | 2027-04-24 | 2027-06-21 |  |  |  |  |  |  |  |  |  |  |
| TAEXCCCL010001 |  | Pipe Installation with manhole | 12d | 2027-04-24 | 2027-05-08 | TAEXCCCU120001 |  |  |  |  | -14.55d | 0d | ELECTRACIAN [96 h]; LABOR [192 h]; COST [25094] | 25,094 |  |
| TAEXCCCL010002 |  | CCTV Swiches Lighting panels Installation | 13d | 2027-05-08 | 2027-05-23 | TAEXCCCL010001 |  |  |  |  | 44.45d | 0d | ELECTRACIAN [330 h]; EXCAVATOR [120 h]; LABOR [330 h]; EXCAVATOR OPERATOR [120 h]; COST [2578] | 2,578 |  |
| TAEXCCCL010003 |  | Cable laying and connected with Panels | 10d | 2027-05-23 | 2027-06-03 | TAEXCCCL010002 |  |  |  |  | 44.45d | 0d | ELECTRACIAN [160 h]; LABOR [320 h]; COST [19654] | 19,654 |  |
| TAEXCCCL010004 |  | Pole Installation with IP Outdoor CCTV POE Camera | 15d | 2027-06-03 | 2027-06-21 | TAEXCCCL010003 |  |  |  |  | 44.45d | 60.72d | ELECTRACIAN [96 h]; EXCAVATOR [96 h]; LABOR [96 h]; EXCAVATOR OPERATOR [96 h]; COST [4737] | 4,737 |  |
|  | 17 | **Potable Networks** |  | 2026-06-02 | 2027-03-21 |  |  |  |  |  |  |  |  |  |  |
| TAEXPTCL010001 |  | Excavation works for Trench | 1d | 2026-06-02 A | 2026-06-02 A | TAEXPTCC010001 | 100% |  |  |  |  |  | DUMP TRUCK [120 h]; EXCAVATOR [60 h]; LABOR [30 h]; DUMP TRUCK DRIVER [120 h]; EXCAVATOR OPERATOR [60 h]; COST [59351.2] | 59,351.25 | 59,351.25 |
| TAEXPTCL010002 |  | Bedding Works | 2d | 2026-06-20 A | 2026-10-24 | TAEXPTCL0100011, TAEXTSCL010002 | 85% | 0.3d | 2026-08-19 | 2026-08-22 | 75.22d | 0d | DUMP TRUCK [16 h]; EXCAVATOR [16 h]; LABOR [32 h]; DUMP TRUCK DRIVER [16 h]; EXCAVATOR OPERATOR [16 h]; COST [22735.9] | 22,735.92 | 19,325.53 |
| TAEXPTCL010003 |  | Install Pipes & Fittings | 8d | 2026-06-20 A | 2027-01-17 | TAEXPTCL010002, TAEXPTCU120003 | 85% | 1.2d | 2027-01-31 | 2027-02-09 | 84.06d | 0d | LABOR [128 h]; PLUMBER [64 h]; COST [78112] | 78,112 | 66,395.2 |
| TAEXPTCL010004 |  | Backfilling Works for Trench | 15d | 2026-06-30 A | 2027-01-19 | TAEXPTCL010003 | 85% | 2.25d | 2027-01-11 | 2027-01-27 | 122.64d | 0d | DUMP TRUCK [120 h]; WATER TANKER [20 h]; EXCAVATOR [40 h]; LABOR [60 h]; DUMP TRUCK DRIVER [120 h]; WATER TANKER DRIVER [20 h]; EXCAVATOR OPERATOR [40 h]; COMPACTOR [60 h]; COST [28300] | 28,300 | 24,055 |
| TAEXPTCL0100011 |  | Excavation works for Trench Part 01 | 4d | 2026-07-15 A | 2026-10-19 | TAEXPTCL040001 | 85% | 0.6d | 2026-07-22 | 2026-07-27 | 6.46d | 0d | DUMP TRUCK [120 h]; EXCAVATOR [60 h]; LABOR [30 h]; DUMP TRUCK DRIVER [120 h]; EXCAVATOR OPERATOR [60 h]; COST [31958.4] | 31,958.37 | 27,164.61 |
| TAEXPTCL010007 |  | Valve Chamber works | 15d | 2026-07-26 A | 2027-03-17 | TAEXPTCL010006, TAEXPTCU120007 | 90% | 1.5d | 2027-03-06 | 2027-03-23 | 62.04d | 0d | WATER TANKER [24 h]; EXCAVATOR [28 h]; CONCRET MIXER [20 h]; LABOR [128 h]; WATER TANKER DRIVER [24 h]; EXCAVATOR OPERATOR [28 h]; PLUMBER [32 h]; STEEL FIXER [24 h]; CARPENTER [56 h]; MASON [32 h]; CONCRET MIXER OPERATOR [20 h]; COST [22300] | 22,300 | 20,070 |
| TAEXPTCL010005 |  | Install Valves with fittings | 4d | 2026-08-08 A | 2027-01-21 | TAEXPTCL010004 FF+2d, TAPQDVPT00021, TAEXPTCL030005 | 90% | 0.4d | 2027-01-30 | 2027-02-03 | 122.64d | 4.91d | LABOR [64 h]; PLUMBER [64 h]; COST [12500] | 12,500 | 11,250 |
| TAEXPTCL010006 |  | Install fire hydrent | 6d | 2026-08-08 A | 2027-01-17 | TAEXPTCL010003, TAEXPTCL030008 | 95% | 0.3d | 2027-01-18 | 2027-01-25 | 89.04d | 4.98d | LABOR [96 h]; PLUMBER [48 h]; COST [24000] | 24,000 | 22,800 |
| TAEXPTCL010008 |  | Inspection Test | 4d | 2026-08-23 A | 2027-03-21 | TAEXPTCL010007 | 20% | 3.2d | 2027-03-23 | 2027-03-28 | 117.44d | 0d | WATER TANKER [32 h]; LABOR [32 h]; WATER TANKER DRIVER [32 h]; PLUMBER [32 h]; COST [4005] | 4,005 | 801 |
|  | 3 | **TSE Networks** |  | 2026-06-02 | 2027-05-06 |  |  |  |  |  |  |  |  |  |  |
| TAEXTSCL010001 |  | Excavation works for Trench | 1d | 2026-06-02 A | 2026-06-02 A | TAEXTSCL070001 | 100% |  |  |  |  |  | DUMP TRUCK [128 h]; EXCAVATOR [64 h]; LABOR [20 h]; DUMP TRUCK DRIVER [128 h]; EXCAVATOR OPERATOR [64 h]; COST [54677.5] | 54,677.51 | 54,677.51 |
| TAEXTSCL010002 |  | Bedding Works | 2d | 2026-06-15 A | 2026-10-24 | TAEXTSCL0100011 | 69% | 0.62d | 2026-06-27 | 2026-06-29 | 75.22d | 0d | DUMP TRUCK [16 h]; EXCAVATOR [16 h]; LABOR [32 h]; DUMP TRUCK DRIVER [16 h]; EXCAVATOR OPERATOR [16 h]; COST [5150] | 5,150 | 3,553.5 |
| TAEXTSCL010003 |  | Install Pipes & Fittings | 8d | 2026-06-20 A | 2027-04-27 | TAEXTSCL010002, TAEXTSCU120003 | 69% | 2.48d | 2027-04-04 | 2027-04-13 | 55.54d | 0d | LABOR [128 h]; PLUMBER [128 h]; COST [72300] | 72,300 | 49,887 |
| TAEXTSCL010004 |  | Backfilling Works for Trench | 15d | 2026-06-27 A | 2027-05-03 | TAEXTSCL010003 | 69% | 4.65d | 2027-04-17 | 2027-05-04 | 55.54d | 0d | DUMP TRUCK [220 h]; WATER TANKER [120 h]; EXCAVATOR [120 h]; LABOR [120 h]; DUMP TRUCK DRIVER [220 h]; WATER TANKER DRIVER [120 h]; EXCAVATOR OPERATOR [120 h]; COMPACTOR [128 h]; COST [25300] | 25,300 | 17,457 |
| TAEXTSCL0100011 |  | Excavation works for Trench Part 01 | 4d | 2026-07-15 A | 2026-10-22 | TAEXTSCL030001 | 10% | 3.6d | 2026-07-15 | 2026-07-20 | 8.34d | 0d | DUMP TRUCK [128 h]; EXCAVATOR [64 h]; LABOR [20 h]; DUMP TRUCK DRIVER [128 h]; EXCAVATOR OPERATOR [64 h]; COST [18225.8] | 18,225.83 | 1,822.58 |
| TAEXTSCL010006 |  | Valve Chamber works | 16d | 2026-07-19 A | 2027-05-04 | TAEXTSCL010005 | 90% | 1.6d | 2027-05-10 | 2027-05-29 | 87.95d | 0d | WATER TANKER [60 h]; EXCAVATOR [60 h]; CONCRET MIXER [72 h]; LABOR [120 h]; WATER TANKER DRIVER [60 h]; EXCAVATOR OPERATOR [60 h]; PLUMBER [120 h]; STEEL FIXER [120 h]; CARPENTER [120 h]; MASON [120 h]; CONCRET MIXER OPERATOR [72 h]; COST [40250] | 40,250 | 36,225 |
| TAEXTSCL010005 |  | Install Valves with fittings | 4d | 2026-08-08 A | 2027-05-03 | TAEXTSCL010004 FF, TAEXTSCL030005 | 90% | 0.4d | 2027-05-12 | 2027-05-17 | 55.54d | 0d | LABOR [64 h]; PLUMBER [64 h]; COST [6800] | 6,800 | 6,120 |
| TAEXTSCL010007 |  | Inspection Test | 4d | 2026-08-23 A | 2027-05-06 | TAEXTSCL010006 | 69% | 1.24d | 2027-04-18 | 2027-04-22 | 87.95d | 32.4d | WATER TANKER [32 h]; LABOR [64 h]; WATER TANKER DRIVER [32 h]; PLUMBER [64 h]; COST [5600] | 5,600 | 3,864 |

| ID | WBS | Activity | Duration | Start | Finish | Predecessors | Complete | Remaining | Planned start | Planned finish | Total float | Free float | Resources | Cost | Actual cost |
| --- | --- | --- | --- | --- | --- | --- | --- | --- | --- | --- | --- | --- | --- | --- | --- |
|  | 13 | **Sewerage Networks** |  | 2026-03-28 | 2026-12-22 |  |  |  |  |  |  |  |  |  |  |
| TAEXSWCL010001 |  | Excavation works for Trench | 10d | 2026-03-28 A | 2026-04-07 A | TAEXSWCL060001 | 100% |  |  |  |  |  | DUMP TRUCK [208 h]; EXCAVATOR [104 h]; LABOR [52 h]; DUMP TRUCK DRIVER [208 h]; EXCAVATOR OPERATOR [104 h]; COST [35490] | 35,490 | 35,490 |
| TAEXSWCL010002 |  | Bedding Works | 2d | 2026-04-01 A | 2026-04-02 A | TAEXSWCL010001 | 100% |  |  |  |  |  | DUMP TRUCK [16 h]; EXCAVATOR [16 h]; LABOR [48 h]; DUMP TRUCK DRIVER [16 h]; EXCAVATOR OPERATOR [16 h]; COST [17513.9] | 17,513.89 | 17,513.89 |
| TAEXSWCL010003 |  | Install GRP Pipes & Fittings | 6d | 2026-04-04 A | 2026-04-10 A | TAEXSWCL010002 | 100% |  | 2026-04-04 | 2026-04-09 |  |  | EXCAVATOR [80 h]; LABOR [160 h]; EXCAVATOR OPERATOR [80 h]; PLUMBER [80 h]; COST [31620] | 31,620 | 31,620 |
| TAEXSWCL010004 |  | Backfilling Works for Trench | 11d | 2026-04-11 A | 2026-04-22 A | TAEXSWCL010003 | 100% |  |  |  |  |  | DUMP TRUCK [240 h]; WATER TANKER [120 h]; EXCAVATOR [120 h]; LABOR [120 h]; DUMP TRUCK DRIVER [240 h]; WATER TANKER DRIVER [120 h]; EXCAVATOR OPERATOR [120 h]; COMPACTOR [120 h]; COST [13500] | 13,500 | 13,500 |
| TAEXSWCL010005 |  | Manhole Installation with backfilling | 7d | 2026-04-21 A | 2026-04-28 A | TAEXSWCL010003 | 100% |  |  |  |  |  | DUMP TRUCK [112 h]; EXCAVATOR [56 h]; LABOR [112 h]; DUMP TRUCK DRIVER [112 h]; EXCAVATOR OPERATOR [56 h]; PLUMBER [32 h]; MASON [32 h]; COST [34300] | 34,300 | 34,300 |
| TAEXSWCL0100011 |  | Excavation works for Trench Part 01 | 10d | 2026-07-15 A | 2026-11-08 | TAEXSWCL0600011 | 5% | 9.5d | 2026-10-21 | 2026-11-02 | 131.68d | 0d | DUMP TRUCK [208 h]; EXCAVATOR [104 h]; LABOR [52 h]; DUMP TRUCK DRIVER [208 h]; EXCAVATOR OPERATOR [104 h]; COST [19110] | 19,110 | 955.5 |
| TAEXSWCL0100021 |  | Bedding Works Part 01 | 2d | 2026-07-25 A | 2026-11-10 | TAEXSWCL010002, TAEXSWCL0100011 | 5% | 1.9d | 2026-09-10 | 2026-09-13 | 188.6d | 0d | DUMP TRUCK [16 h]; EXCAVATOR [16 h]; LABOR [48 h]; DUMP TRUCK DRIVER [16 h]; EXCAVATOR OPERATOR [16 h]; COST [9430.56] | 9,430.56 | 471.53 |
| TAEXSWCL0100031 |  | Install GRP Pipes & Fittings Part 01 | 10d | 2026-07-25 A | 2026-11-21 | TAEXSWCL010003, TAEXSWCL0100021 | 5% | 9.5d | 2026-09-13 | 2026-09-24 | 188.6d | 0d | EXCAVATOR [80 h]; LABOR [160 h]; EXCAVATOR OPERATOR [80 h]; PLUMBER [80 h]; COST [21080] | 21,080 | 1,054 |
| TAEXSWCL0100051 |  | Manhole Installation with backfilling Part 01 | 10d | 2026-07-28 A | 2026-12-20 | TAEXSWCL0100041 FF+10d, TAEXSWCL010005, TAPQDVSW00021 | 15% | 8.5d | 2026-10-14 | 2026-10-26 | 188.6d | 0d | DUMP TRUCK [112 h]; EXCAVATOR [56 h]; LABOR [112 h]; DUMP TRUCK DRIVER [112 h]; EXCAVATOR OPERATOR [56 h]; PLUMBER [32 h]; MASON [32 h]; COST [34300] | 34,300 | 5,145 |
| TAEXSWCL0100041 |  | Backfilling Works for Trench Part 01 | 12d | 2026-08-08 A | 2026-12-08 | TAEXSWCL0100031 FF+15d, TAEXSWCL010004 | 5% | 11.4d | 2026-08-08 | 2026-08-22 | 188.6d | 0d | DUMP TRUCK [240 h]; WATER TANKER [120 h]; EXCAVATOR [120 h]; LABOR [120 h]; DUMP TRUCK DRIVER [240 h]; WATER TANKER DRIVER [120 h]; EXCAVATOR OPERATOR [120 h]; COMPACTOR [120 h]; COST [9000] | 9,000 | 450 |
| TAEXSWCL010006 |  | Leakage Test | 3d | 2026-10-10 A | 2026-12-22 | TAEXSWCL0100051 | 40% | 1.8d | 2026-12-15 | 2026-12-17 | 188.6d | 65.89d | WATER TANKER [24 h]; LABOR [48 h]; WATER TANKER DRIVER [24 h]; PLUMBER [24 h]; COST [23436.2] | 23,436.15 | 9,374.46 |
|  | 4 | **Storm Networks** |  | 2026-02-02 | 2026-12-28 |  |  |  |  |  |  |  |  |  |  |
| TAEXSTCL010001 |  | Excavation works for Trench & Box Culvert | 10d | 2026-02-02 A | 2026-02-12 A | TAEXSTCC010001 | 100% |  |  |  |  |  | DUMP TRUCK [320 h]; EXCAVATOR [160 h]; LABOR [80 h]; DUMP TRUCK DRIVER [320 h]; EXCAVATOR OPERATOR [160 h]; COST [200172] | 200,172.19 | 200,172.19 |
| TAEXSTCL010002 |  | Bedding Works | 2d | 2026-02-28 A | 2026-03-01 A | TAEXSTCL010001 | 100% |  |  |  |  |  | DUMP TRUCK [16 h]; EXCAVATOR [16 h]; LABOR [48 h]; DUMP TRUCK DRIVER [16 h]; EXCAVATOR OPERATOR [16 h]; COST [67156.2] | 67,156.22 | 67,156.22 |
| TAEXSTCL010003 |  | Install GRP Pipes & Fittings | 10d | 2026-03-31 A | 2026-04-11 A | TAEXSTCL010002 | 100% |  |  |  |  |  | EXCAVATOR [72 h]; LABOR [144 h]; EXCAVATOR OPERATOR [72 h]; PLUMBER [144 h]; COST [301994] | 301,993.5 | 301,993.5 |
| TAEXSTCL010004 |  | Backfilling Works for Trench and Boxculvert | 12d | 2026-04-04 A | 2026-04-16 A | TAEXSTCL010003 | 100% |  |  |  |  |  | DUMP TRUCK [60 h]; WATER TANKER [20 h]; EXCAVATOR [30 h]; LABOR [80 h]; DUMP TRUCK DRIVER [60 h]; WATER TANKER DRIVER [20 h]; EXCAVATOR OPERATOR [30 h]; COMPACTOR [32 h]; COST [108975] | 108,975 | 108,975 |
| TAEXSTCL010008 |  | Install Box Culvert Part 1 | 2d | 2026-04-16 A | 2026-04-18 A | TAEXSTCL010003 SS | 100% |  |  |  |  |  | EXCAVATOR [160 h]; LABOR [448 h]; EXCAVATOR OPERATOR [160 h]; PLUMBER [320 h]; COST [843188] | 843,187.76 | 843,187.76 |
| TAEXSTCL010005 |  | Manhole Installation with backfilling | 1d | 2026-04-25 A | 2026-04-25 A | TAEXSTCL010003, TAEXSTCL010004 | 100% |  |  |  |  |  | DUMP TRUCK [110 h]; EXCAVATOR [112 h]; LABOR [224 h]; DUMP TRUCK DRIVER [110 h]; EXCAVATOR OPERATOR [112 h]; PLUMBER [112 h]; MASON [224 h]; COST [26300] | 26,300 | 26,300 |
| TAEXSTCL010009 |  | Install Box Culvert Part 2 | 14d | 2026-04-25 A | 2026-05-10 A | TAEXSTCL010008 | 100% |  |  |  |  |  | EXCAVATOR [80 h]; LABOR [160 h]; EXCAVATOR OPERATOR [80 h]; PLUMBER [160 h]; COST [458810] | 458,809.87 | 458,809.87 |
| TAEXSTCL0100051 |  | Manhole Installation with backfilling Part 01 | 8d | 2026-06-06 A | 2026-12-13 | TAEXSTCL010005, TAPQDVST00061, TAEXSTCL0100041 | 85% | 1.2d | 2026-11-07 | 2026-11-16 | 54.79d | 0d | DUMP TRUCK [110 h]; EXCAVATOR [112 h]; LABOR [224 h]; DUMP TRUCK DRIVER [110 h]; EXCAVATOR OPERATOR [112 h]; PLUMBER [112 h]; MASON [224 h]; COST [78900] | 78,900 | 67,065 |
| TAEXSTCL0100011 |  | Excavation works for Trench & Box Culvert Part 01 | 25d | 2026-07-15 A | 2026-10-22 | TAEXSTCC0100011, TAEXSTCL0400011 | 85% | 3.75d | 2026-07-21 | 2026-08-18 | 20.33d | 0d | DUMP TRUCK [320 h]; EXCAVATOR [160 h]; LABOR [80 h]; DUMP TRUCK DRIVER [320 h]; EXCAVATOR OPERATOR [160 h]; COST [50043.1] | 50,043.05 | 42,536.59 |
| TAEXSTCL010006 |  | Install Catch Basin with UPVC Pipes & Fittings | 11d | 2026-07-26 A | 2026-12-19 | TAEXSTCL0100051 | 55% | 4.95d | 2026-09-26 | 2026-10-08 | 54.79d | 0d | EXCAVATOR [44 h]; LABOR [88 h]; EXCAVATOR OPERATOR [44 h]; PLUMBER [88 h]; COST [91250] | 91,250 | 50,187.5 |
| TAEXSTCL0100041 |  | Backfilling Works for Trench and Boxculvert Part 01 | 12d | 2026-08-02 A | 2026-10-25 | TAEXSTCL0100091 FF+15d, TAEXSTCL010004 | 50% | 6d | 2026-08-18 | 2026-08-31 | 95.33d | 40.54d | DUMP TRUCK [60 h]; WATER TANKER [20 h]; EXCAVATOR [30 h]; LABOR [80 h]; DUMP TRUCK DRIVER [60 h]; WATER TANKER DRIVER [20 h]; EXCAVATOR OPERATOR [30 h]; COMPACTOR [32 h]; COST [36325] | 36,325 | 18,162.5 |
| TAEXSTCL0100091 |  | Install Box Culvert Part 2 Part 01 | 10d | 2026-08-02 A | 2026-08-30 A | TAEXSTCL010009 | 100% |  | 2026-08-03 | 2026-08-13 |  |  | EXCAVATOR [80 h]; LABOR [160 h]; EXCAVATOR OPERATOR [80 h]; PLUMBER [160 h]; COST [24147.9] | 24,147.89 | 24,147.89 |
| TAEXSTCL0100021 |  | Bedding Works Part 01 | 5d | 2026-08-02 A | 2026-10-25 | TAEXSTCL010002, TAEXSTCL0100011, TAEXPTCL010002 | 85% | 0.75d | 2026-09-05 | 2026-09-10 | 75.22d | 0d | DUMP TRUCK [16 h]; EXCAVATOR [16 h]; LABOR [48 h]; DUMP TRUCK DRIVER [16 h]; EXCAVATOR OPERATOR [16 h]; COST [16789.1] | 16,789.06 | 14,270.7 |
| TAEXSTCL0100031 |  | Install GRP Pipes & Fittings Part 01 | 10d | 2026-08-02 A | 2026-10-26 | TAEXSTCL010003, TAEXSTCL0100021 | 85% | 1.5d | 2026-09-10 | 2026-09-22 | 75.22d | 46.27d | EXCAVATOR [72 h]; LABOR [144 h]; EXCAVATOR OPERATOR [72 h]; PLUMBER [144 h]; COST [100664] | 100,664.5 | 85,564.82 |
| TAEXSTCL010007 |  | Leakage Test | 3d | 2026-12-24 | 2026-12-28 | TAEXSTCL010006 FS+5d, TAEXSTCL0100051, TAEXSTCL0100091 |  |  |  |  | 54.79d | 0d | WATER TANKER [24 h]; LABOR [24 h]; WATER TANKER DRIVER [24 h]; PLUMBER [24 h]; COST [11200] | 11,200 |  |

| ID | WBS | Activity | Duration | Start | Finish | Predecessors | Complete | Planned start | Planned finish | Total float | Free float | Resources | Cost | Actual cost |
| --- | --- | --- | --- | --- | --- | --- | --- | --- | --- | --- | --- | --- | --- | --- |
|  | 5 | **Local Road 06** |  | 2025-12-18 | 2027-08-21 |  |  |  |  |  |  |  |  |  |
|  | 12 | **Road Works** |  | 2025-12-18 | 2027-06-24 |  |  |  |  |  |  |  |  |  |
| TAEXRDCL060001 |  | Road Excavation and Disposal | 24d | 2025-12-18 A | 2026-01-14 A | TAEXRDCC010001 | 100% |  |  |  |  | DUMP TRUCK [320 h]; EXCAVATOR [160 h]; LABOR [80 h]; DUMP TRUCK DRIVER [320 h]; EXCAVATOR OPERATOR [160 h]; COST [116390] | 116,390 | 116,390 |
| TAEXRDCL060002 |  | Backfilling Works for Road | 82d | 2026-02-28 A | 2026-06-02 A | TAEXRDCL060001 | 100% |  |  |  |  | ROLEER [112 h]; DUMP TRUCK [224 h]; WATER TANKER [112 h]; EXCAVATOR [112 h]; GRADER [112 h]; LABOR [112 h]; GRADER OPERATOR [112 h]; DUMP TRUCK DRIVER [224 h]; WATER TANKER DRIVER [112 h]; EXCAVATOR OPERATOR [112 h]; ROLLER OPERATOR [112 h]; COST [197305] | 197,305 | 197,305 |
| TAEXRDCL060003 |  | Subgrade Works | 5d | 2026-03-08 A | 2026-03-12 A | TAEXRDCL060002 | 100% |  |  |  |  | ROLEER [56 h]; DUMP TRUCK [110 h]; WATER TANKER [56 h]; EXCAVATOR [56 h]; GRADER [56 h]; LABOR [56 h]; GRADER OPERATOR [56 h]; DUMP TRUCK DRIVER [110 h]; WATER TANKER DRIVER [56 h]; EXCAVATOR OPERATOR [56 h]; ROLLER OPERATOR [56 h]; COST [99337.8] | 99,337.79 | 99,337.79 |
| TAEXRDCL060000 |  | Asphalt Milling and Deisposal | 4d | 2026-07-25 A | 2026-07-26 A | TAEXSTCL060007 | 100% | 2027-02-14 | 2027-02-18 |  |  | DUMP TRUCK [64 h]; MILLING MACHINE [64 h]; DUMP TRUCK DRIVER [64 h]; MILLING MACHINE OPERATOR [64 h]; COST [99400] | 99,400 | 99,400 |
| TAEXRDCL0600031 |  | Subgrade Works Part 01 | 4d | 2027-03-07 | 2027-03-11 | TAEXRDCL060000, TAEXRDCL060003 |  |  |  | 28.96d | 0d | ROLEER [56 h]; DUMP TRUCK [110 h]; WATER TANKER [56 h]; EXCAVATOR [56 h]; GRADER [56 h]; LABOR [56 h]; GRADER OPERATOR [56 h]; DUMP TRUCK DRIVER [110 h]; WATER TANKER DRIVER [56 h]; EXCAVATOR OPERATOR [56 h]; ROLLER OPERATOR [56 h]; COST [36741.4] | 36,741.37 |  |
| TAEXRDCL060004 |  | ABC aggregate Base Course Works | 8d | 2027-03-11 | 2027-03-21 | TAEXSTCL060007, TAEXRDCL0600031, TAPQDVRD00011 |  |  |  | 28.96d | 0d | ROLEER [64 h]; DUMP TRUCK [240 h]; WATER TANKER [64 h]; EXCAVATOR [64 h]; GRADER [64 h]; LABOR [64 h]; GRADER OPERATOR [64 h]; DUMP TRUCK DRIVER [240 h]; WATER TANKER DRIVER [64 h]; EXCAVATOR OPERATOR [64 h]; ROLLER OPERATOR [64 h]; COST [355786] | 355,786 |  |
| TAEXRDCL060005 |  | MBC1 layer | 1d | 2027-03-21 | 2027-03-22 | TAEXRDCL060004, TAEXRDCL080000 FS+15d, TAEXRDCL060000 |  |  |  | 28.96d | 0d | MC1 sprinker [8 h]; MC DRIVER [8 h]; COST [9874] | 9,874 |  |
| TAEXRDCL060006 |  | BBC Base Course | 6d | 2027-03-22 | 2027-03-29 | TAEXRDCL060005 |  |  |  | 28.96d | 26.46d | ROLEER [48 h]; DUMP TRUCK [72 h]; MILLING MACHINE [24 h]; WHEEL ROLLER [48 h]; LABOR [100 h]; DUMP TRUCK DRIVER [72 h]; MILLING MACHINE OPERATOR [24 h]; WHEEL ROLLER OPERATOR [48 h]; ROLLER OPERATOR [48 h]; COST [475686] | 475,686 |  |
| TAEXRDCL060008 |  | Precast Concret Kerps | 18d | 2027-04-28 | 2027-05-19 | TAEXRDCL060006, TAEXRDCL010008 |  |  |  | 2.5d | 0d | LABOR [510 h]; COST [401420] | 401,420 |  |
| TAEXRDCL060007 |  | BWC Asphalt Wearing Course with RC | 2d | 2027-05-19 | 2027-05-22 | TAEXRDCL060006, TAEXRDCL060008 |  |  |  | 33.5d | 0d | ROLEER [16 h]; DUMP TRUCK [32 h]; MILLING MACHINE [8 h]; WHEEL ROLLER [16 h]; LABOR [80 h]; DUMP TRUCK DRIVER [32 h]; MILLING MACHINE OPERATOR [8 h]; WHEEL ROLLER OPERATOR [16 h]; ROLLER OPERATOR [16 h]; COST [518119] | 518,119 |  |
| TAEXRDCL060009 |  | Precast Interlock Works | 14d | 2027-05-22 | 2027-06-07 | TAEXRDCL060008, TAEXRDCL060007 |  |  |  | 33.5d | 0d | LABOR [240 h]; COST [575671] | 575,671.22 |  |
| TAEXRDCL060010 |  | Stone Paving works | 12d | 2027-06-07 | 2027-06-21 | TAEXRDCL060009 |  |  |  | 33.5d | 0d | DUMP TRUCK [112 h]; LABOR [224 h]; DUMP TRUCK DRIVER [112 h]; COST [38120] | 38,120 |  |
| TAEXRDCL060011 |  | Road Marking | 1d | 2027-06-21 | 2027-06-22 | TAEXRDCL060010 |  |  |  | 33.5d | 0d | LABOR [32 h]; COST [4100] | 4,100 |  |
| TAEXRDCL060012 |  | Traffic Sinage | 2d | 2027-06-22 | 2027-06-24 | TAEXRDCL060011 |  |  |  | 33.5d | 31.66d | EXCAVATOR [8 h]; LABOR [32 h]; EXCAVATOR OPERATOR [8 h]; COST [42000] | 42,000 |  |
|  | 1 | **Electrical Works** |  | 2027-05-18 | 2027-08-21 |  |  |  |  |  |  |  |  |  |
| TAEXELCL060001 |  | Trench Cut off | 10d | 2027-05-18 | 2027-05-30 | TAEXELCL010001 |  |  |  | -29.3d | 0d | DUMP TRUCK [160 h]; EXCAVATOR [80 h]; LABOR [40 h]; DUMP TRUCK DRIVER [160 h]; EXCAVATOR OPERATOR [80 h]; COST [27356.2] | 27,356.25 |  |
| TAEXELCL060002 |  | Drawpit and PVC Pipes Installation | 5d | 2027-05-30 | 2027-06-05 | TAEXELCL060001, TAPQDVEL0005 |  |  |  | -23.15d | 0d | ELECTRACIAN [80 h]; EXCAVATOR [40 h]; LABOR [80 h]; EXCAVATOR OPERATOR [40 h]; COST [5280] | 5,280 |  |
| TAEXELCL060003 |  | Road Crossing Ducts | 2d | 2027-06-05 | 2027-06-07 | TAEXELCL060002 |  |  |  | -23.15d | 0d | DUMP TRUCK [40 h]; EXCAVATOR [40 h]; DUMP TRUCK DRIVER [40 h]; EXCAVATOR OPERATOR [40 h]; COST [260] | 260 |  |
| TAEXELCL060006 |  | Poles RC Foundation | 4d | 2027-06-05 | 2027-06-09 | TAEXELCL060002, TAPQDVEL0005 |  |  |  | 36.85d | 0d | EXCAVATOR [40 h]; LABOR [40 h]; EXCAVATOR OPERATOR [40 h]; COST [12500] | 12,500 |  |
| TAEXELCL060004 |  | Trench Backfilling | 14d | 2027-06-07 | 2027-06-23 | TAEXELCL060003 |  |  |  | -23.15d | 0d | DUMP TRUCK [60 h]; WATER TANKER [20 h]; EXCAVATOR [30 h]; LABOR [60 h]; DUMP TRUCK DRIVER [60 h]; WATER TANKER DRIVER [20 h]; EXCAVATOR OPERATOR [30 h]; COMPACTOR [30 h]; COST [14258] | 14,258 |  |
| TAEXELCL060008 |  | Lighting Pole Installation with Luminares | 6d | 2027-06-09 | 2027-06-16 | TAEXELCL060006 |  |  |  | 39.85d | 69.15d | ELECTRACIAN [40 h]; CRANE [40 h]; CRANE OPERATOR [40 h]; COST [122050] | 122,050 |  |
| TAEXELCL060005 |  | Cables Pulling | 3d | 2027-08-15 | 2027-08-18 | TAEXELCL060002, TAEXELCL060003, TAEXELCL060004 FS+45d |  |  |  | -23.15d | 0d | ELECTRACIAN [120 h]; LABOR [160 h]; COST [368000] | 368,000 |  |
| TAEXELCL060007 |  | Earthing cables | 2d | 2027-08-18 | 2027-08-21 | TAEXELCL060006, TAEXELCL060005, TAEXELCL010007 |  |  |  | -23.15d | 0d | ELECTRACIAN [80 h]; LABOR [40 h]; COST [2320] | 2,320 |  |

| ID | WBS | Activity | Duration | Start | Finish | Predecessors | Complete | Remaining | Planned start | Planned finish | Total float | Free float | Resources | Cost | Actual cost |
| --- | --- | --- | --- | --- | --- | --- | --- | --- | --- | --- | --- | --- | --- | --- | --- |
|  | 2 | **Telecommunication Works** |  | 2027-05-20 | 2027-07-07 |  |  |  |  |  |  |  |  |  |  |
| TAEXTCCL060001 |  | Trench Cut off | 10d | 2027-05-20 | 2027-06-01 | TAEXTCCL010001 |  |  |  |  | -17.61d | 0d | DUMP TRUCK [150 h]; EXCAVATOR [80 h]; LABOR [40 h]; DUMP TRUCK DRIVER [150 h]; EXCAVATOR OPERATOR [80 h]; COST [15230] | 15,230 |  |
| TAEXTCCL060002 |  | Drawpit and PVC Pipes Installation | 5d | 2027-06-13 | 2027-06-19 | TAEXTCCL060001, TAEXTCCL010002 |  |  |  |  | -20.27d | 0d | ELECTRACIAN [80 h]; EXCAVATOR [40 h]; LABOR [20 h]; EXCAVATOR OPERATOR [40 h]; COST [100235] | 100,235 |  |
| TAEXTCCL060003 |  | Road Crossing Ducts | 2d | 2027-06-19 | 2027-06-21 | TAEXTCCL060002 |  |  |  |  | 20.73d | 0d | DUMP TRUCK [32 h]; EXCAVATOR [16 h]; DUMP TRUCK DRIVER [32 h]; EXCAVATOR OPERATOR [16 h]; COST [8600] | 8,600 |  |
| TAEXTCCL060004 |  | Trench Backfilling | 14d | 2027-06-21 | 2027-07-07 | TAEXTCCL060003 |  |  |  |  | 20.73d | 41d | DUMP TRUCK [150 h]; WATER TANKER [120 h]; EXCAVATOR [120 h]; LABOR [160 h]; DUMP TRUCK DRIVER [150 h]; WATER TANKER DRIVER [120 h]; EXCAVATOR OPERATOR [120 h]; COMPACTOR [135 h]; COST [32500] | 32,500 |  |
|  | 17 | **CCTV Works** |  | 2027-05-08 | 2027-07-05 |  |  |  |  |  |  |  |  |  |  |
| TAEXCCCL060001 |  | Pipe Installation with manhole | 12d | 2027-05-08 | 2027-05-22 | TAEXCCCL010001 |  |  |  |  | -14.55d | 0d | ELECTRACIAN [192 h]; LABOR [380 h]; COST [25094] | 25,094 |  |
| TAEXCCCL060002 |  | CCTV Swiches Lighting panels Installation | 13d | 2027-05-22 | 2027-06-06 | TAEXCCCL060001 |  |  |  |  | 32.45d | 0d | ELECTRACIAN [330 h]; EXCAVATOR [120 h]; LABOR [330 h]; EXCAVATOR OPERATOR [120 h]; COST [2578] | 2,578 |  |
| TAEXCCCL060003 |  | Cable laying and connected with Panels | 10d | 2027-06-06 | 2027-06-17 | TAEXCCCL060002 |  |  |  |  | 32.45d | 0d | ELECTRACIAN [160 h]; LABOR [320 h]; COST [19654] | 19,654 |  |
| TAEXCCCL060004 |  | Pole Installation with IP Outdoor CCTV POE Camera | 15d | 2027-06-17 | 2027-07-05 | TAEXCCCL060003 |  |  |  |  | 32.45d | 48.72d | ELECTRACIAN [120 h]; EXCAVATOR [96 h]; LABOR [120 h]; EXCAVATOR OPERATOR [96 h]; COST [4735] | 4,735 |  |
|  | 16 | **Potable Networks** |  | 2026-07-18 | 2027-04-06 |  |  |  |  |  |  |  |  |  |  |
| TAEXPTCL060001 |  | Excavation works for Trench | 8d | 2026-07-18 A | 2026-11-04 | TAEXPTCC0100011 | 97% | 0.24d | 2026-08-17 | 2026-08-25 | 62.04d | 0d | DUMP TRUCK [120 h]; EXCAVATOR [60 h]; LABOR [20 h]; DUMP TRUCK DRIVER [120 h]; EXCAVATOR OPERATOR [60 h]; COST [78350] | 78,350 | 75,999.5 |
| TAEXPTCL060003 |  | Install Pipes & Fittings | 8d | 2026-08-08 A | 2027-01-17 | TAEXPTCL060002, TAEXPTCL010003 | 90% | 0.8d | 2027-01-18 | 2027-01-27 | 84.06d | 0d | LABOR [128 h]; PLUMBER [64 h]; COST [78112] | 78,112 | 70,300.8 |
| TAEXPTCL060002 |  | Bedding Works | 2d | 2026-08-08 A | 2026-11-17 | TAEXPTCL060001, TAEXTSCL060002 | 90% | 0.2d | 2026-10-10 | 2026-10-12 | 80.2d | 0d | DUMP TRUCK [16 h]; EXCAVATOR [16 h]; LABOR [32 h]; DUMP TRUCK DRIVER [16 h]; EXCAVATOR OPERATOR [16 h]; COST [22735.9] | 22,735.92 | 20,462.33 |
| TAEXPTCL060007 |  | Valve Chamber works | 16d | 2026-09-05 A | 2027-04-01 | TAEXPTCL060006, TAEXPTCL010007 | 20% | 12.8d | 2027-03-02 | 2027-03-21 | 62.04d | 0d | WATER TANKER [20 h]; EXCAVATOR [30 h]; CONCRET MIXER [24 h]; LABOR [128 h]; WATER TANKER DRIVER [20 h]; EXCAVATOR OPERATOR [30 h]; PLUMBER [40 h]; STEEL FIXER [40 h]; CARPENTER [30 h]; MASON [40 h]; CONCRET MIXER OPERATOR [24 h]; COST [20350] | 20,350 | 4,070 |
| TAEXPTCL060004 |  | Backfilling Works for Trench | 15d | 2026-09-06 A | 2027-01-19 | TAEXPTCL060003 | 90% | 1.5d | 2026-12-31 | 2027-01-18 | 140.24d | 22.51d | DUMP TRUCK [120 h]; WATER TANKER [20 h]; EXCAVATOR [40 h]; LABOR [60 h]; DUMP TRUCK DRIVER [120 h]; WATER TANKER DRIVER [20 h]; EXCAVATOR OPERATOR [40 h]; COMPACTOR [30 h]; COST [28300] | 28,300 | 25,470 |
| TAEXPTCL060005 |  | Install Valves with fittings | 4d | 2026-09-27 A | 2027-02-14 | TAEXPTCL060004 FF, TAPQDVPT00021, TAEXPTCC010005 | 20% | 3.2d | 2027-01-27 | 2027-02-01 | 117.73d | 0d | LABOR [64 h]; PLUMBER [64 h]; COST [4600] | 4,600 | 920 |
| TAEXPTCL060006 |  | Install fire hydrent | 6d | 2027-02-13 | 2027-02-20 | TAEXPTCL060003, TAEXPTCC010006 |  |  |  |  | 84.06d | 0d | LABOR [96 h]; PLUMBER [48 h]; COST [24000] | 24,000 |  |
| TAEXPTCL060008 |  | Inspection Test | 4d | 2027-04-01 | 2027-04-06 | TAEXPTCL060007 |  |  |  |  | 103.84d | 41.05d | WATER TANKER [32 h]; LABOR [32 h]; WATER TANKER DRIVER [32 h]; PLUMBER [32 h]; COST [4005] | 4,005 |  |
|  | 3 | **TSE Networks** |  | 2026-07-25 | 2027-05-25 |  |  |  |  |  |  |  |  |  |  |
| TAEXTSCL060001 |  | Excavation works for Trench | 8d | 2026-07-25 A | 2026-11-16 | TAEXTSCC010001 | 69% | 2.48d | 2026-09-19 | 2026-09-28 | 51.42d | 0d | DUMP TRUCK [128 h]; EXCAVATOR [64 h]; LABOR [20 h]; DUMP TRUCK DRIVER [128 h]; EXCAVATOR OPERATOR [64 h]; COST [72903.3] | 72,903.34 | 50,303.3 |
| TAEXTSCL060003 |  | Install Pipes & Fittings | 8d | 2026-08-15 A | 2027-05-01 | TAEXTSCL060002, TAEXTSCL010003 | 69% | 2.48d | 2027-04-17 | 2027-04-26 | 56.66d | 0d | LABOR [128 h]; PLUMBER [128 h]; COST [72300] | 72,300 | 49,887 |
| TAEXTSCL060002 |  | Bedding Works | 2d | 2026-08-15 A | 2026-11-17 | TAEXTSCL060001 | 69% | 0.62d | 2026-10-17 | 2026-10-19 | 80.2d | 0d | DUMP TRUCK [16 h]; EXCAVATOR [16 h]; LABOR [32 h]; DUMP TRUCK DRIVER [16 h]; EXCAVATOR OPERATOR [16 h]; COST [5200] | 5,200 | 3,588 |
| TAEXTSCL060004 |  | Backfilling Works for Trench | 15d | 2026-08-30 A | 2027-05-05 | TAEXTSCL060003 | 69% | 4.65d | 2027-04-20 | 2027-05-08 | 56.66d | 1.12d | DUMP TRUCK [220 h]; WATER TANKER [120 h]; EXCAVATOR [120 h]; LABOR [120 h]; DUMP TRUCK DRIVER [220 h]; WATER TANKER DRIVER [120 h]; EXCAVATOR OPERATOR [120 h]; COMPACTOR [128 h]; COST [25300] | 25,300 | 17,457 |
| TAEXTSCL060007 |  | Inspection Test | 4d | 2026-08-30 A | 2027-05-25 | TAEXTSCL060006, TAEXPTCL060008 | 69% | 1.24d | 2027-05-26 | 2027-05-31 | 68.55d | 0d | WATER TANKER [32 h]; LABOR [64 h]; WATER TANKER DRIVER [32 h]; PLUMBER [64 h]; COST [5680] | 5,680 | 3,919.2 |
| TAEXTSCL060006 |  | Valve Chamber works | 16d | 2026-09-05 A | 2027-05-24 | TAEXTSCL060005 | 10% | 14.4d | 2027-04-27 | 2027-05-16 | 68.55d | 0d | WATER TANKER [60 h]; EXCAVATOR [60 h]; CONCRET MIXER [72 h]; LABOR [120 h]; WATER TANKER DRIVER [60 h]; EXCAVATOR OPERATOR [60 h]; PLUMBER [120 h]; STEEL FIXER [120 h]; CARPENTER [120 h]; MASON [120 h]; CONCRET MIXER OPERATOR [72 h]; COST [40250] | 40,250 | 4,025 |
| TAEXTSCL060005 |  | Install Valves with fittings | 4d | 2026-09-27 A | 2027-05-06 | TAEXTSCL060004 FF, TAEXTSCL010005 | 10% | 3.6d | 2027-04-14 | 2027-04-19 | 55.54d | 0d | LABOR [64 h]; PLUMBER [64 h]; COST [7100] | 7,100 | 710 |

| ID | WBS | Activity | Duration | Start | Finish | Predecessors | Complete | Remaining | Planned start | Planned finish | Total float | Free float | Resources | Cost | Actual cost |
| --- | --- | --- | --- | --- | --- | --- | --- | --- | --- | --- | --- | --- | --- | --- | --- |
|  | 14 | **Sewerage Networks** |  | 2025-12-21 | 2027-03-09 |  |  |  |  |  |  |  |  |  |  |
| TAEXSWCL060001 |  | Excavation works for Trench | 10d | 2025-12-21 A | 2025-12-31 A | TAEXSWCL080001 | 100% |  |  |  |  |  | DUMP TRUCK [208 h]; EXCAVATOR [104 h]; LABOR [52 h]; DUMP TRUCK DRIVER [208 h]; EXCAVATOR OPERATOR [104 h]; COST [54047.7] | 54,047.7 | 54,047.7 |
| TAEXSWCL060002 |  | Bedding Works | 3d | 2025-12-30 A | 2026-01-01 A | TAEXSWCL060001 | 100% |  |  |  |  |  | DUMP TRUCK [16 h]; EXCAVATOR [16 h]; LABOR [48 h]; DUMP TRUCK DRIVER [16 h]; EXCAVATOR OPERATOR [16 h]; COST [21555.6] | 21,555.56 | 21,555.56 |
| TAEXSWCL060003 |  | Install GRP Pipes & Fittings | 12d | 2026-01-03 A | 2026-01-15 A | TAEXSWCL060002 | 100% |  |  |  |  |  | EXCAVATOR [80 h]; LABOR [160 h]; EXCAVATOR OPERATOR [80 h]; PLUMBER [80 h]; COST [42160] | 42,160 | 42,160 |
| TAEXSWCL060004 |  | Backfilling Works for Trench | 10d | 2026-01-17 A | 2026-01-27 A | TAEXSWCL060003 | 100% |  |  |  |  |  | DUMP TRUCK [60 h]; WATER TANKER [20 h]; EXCAVATOR [30 h]; LABOR [120 h]; DUMP TRUCK DRIVER [60 h]; WATER TANKER DRIVER [20 h]; EXCAVATOR OPERATOR [30 h]; COMPACTOR [30 h]; COST [18000] | 18,000 | 18,000 |
| TAEXSWCL060005 |  | Manhole Installation with backfilling | 4d | 2026-04-14 A | 2026-04-18 A | TAEXSWCL060003 | 100% |  |  |  |  |  | DUMP TRUCK [32 h]; EXCAVATOR [18 h]; LABOR [56 h]; DUMP TRUCK DRIVER [32 h]; EXCAVATOR OPERATOR [18 h]; PLUMBER [48 h]; MASON [48 h]; COST [30600] | 30,600 | 30,600 |
| TAEXSWCL060006 |  | Leakage Test | 3d | 2026-07-16 A | 2027-03-09 | TAEXSTCL060007, TAEXSWCL0600051 | 25% | 2.25d | 2027-02-20 | 2027-02-23 | 122.71d | 0d | WATER TANKER [24 h]; LABOR [48 h]; WATER TANKER DRIVER [24 h]; PLUMBER [24 h]; COST [23436.2] | 23,436.16 | 5,859.04 |
| TAEXSWCL0600011 |  | Excavation works for Trench Part 01 | 10d | 2026-09-10 A | 2026-09-13 A | TAEXSWCL0800011 | 100% |  | 2026-09-26 | 2026-10-07 |  |  | DUMP TRUCK [208 h]; EXCAVATOR [104 h]; LABOR [52 h]; DUMP TRUCK DRIVER [208 h]; EXCAVATOR OPERATOR [104 h]; COST [13511.9] | 13,511.92 | 13,511.92 |
| TAEXSWCL0600021 |  | Bedding Works Part 01 | 2d | 2026-09-29 A | 2026-10-28 | TAEXSWCL060002, TAEXSWCL0600011 | 50% | 1d | 2026-10-12 | 2026-10-14 | 215.55d | 0d | DUMP TRUCK [16 h]; EXCAVATOR [16 h]; LABOR [48 h]; DUMP TRUCK DRIVER [16 h]; EXCAVATOR OPERATOR [16 h]; COST [5388.89] | 5,388.89 | 2,694.45 |
| TAEXSWCL0600031 |  | Install GRP Pipes & Fittings Part 01 | 5d | 2026-10-01 A | 2026-11-01 | TAEXSWCL060003, TAEXSWCL0600021 | 50% | 2.5d | 2026-10-14 | 2026-10-20 | 215.55d | 0d | EXCAVATOR [80 h]; LABOR [160 h]; EXCAVATOR OPERATOR [80 h]; PLUMBER [80 h]; COST [10540] | 10,540 | 5,270 |
| TAEXSWCL0600051 |  | Manhole Installation with backfilling Part 01 | 9d | 2026-10-10 A | 2026-12-14 | TAEXSWCL0600041 FF, TAEXSWCL060005, TAPQDVSW00021 | 20% | 7.2d | 2026-11-29 | 2026-12-09 | 192.9d | 70.19d | DUMP TRUCK [32 h]; EXCAVATOR [18 h]; LABOR [56 h]; DUMP TRUCK DRIVER [32 h]; EXCAVATOR OPERATOR [18 h]; PLUMBER [48 h]; MASON [48 h]; COST [45900] | 45,900 | 9,180 |
| TAEXSWCL0600041 |  | Backfilling Works for Trench Part 01 | 10d | 2026-11-07 | 2026-11-18 | TAEXSWCL0600031 FF+15d, TAEXSWCL060004 |  |  |  |  | 215.55d | 22.65d | DUMP TRUCK [60 h]; WATER TANKER [20 h]; EXCAVATOR [30 h]; LABOR [120 h]; DUMP TRUCK DRIVER [60 h]; WATER TANKER DRIVER [20 h]; EXCAVATOR OPERATOR [30 h]; COMPACTOR [30 h]; COST [4500] | 4,500 |  |
|  | 4 | **Storm Networks** |  | 2026-07-18 | 2027-03-07 |  |  |  |  |  |  |  |  |  |  |
| TAEXSTCL060001 |  | Excavation works for Trench | 21d | 2026-07-18 A | 2026-10-25 | TAEXSTCL0100011 | 94% | 1.26d | 2026-08-18 | 2026-09-12 | 20.33d | 0d | DUMP TRUCK [208 h]; EXCAVATOR [104 h]; LABOR [52 h]; DUMP TRUCK DRIVER [208 h]; EXCAVATOR OPERATOR [104 h]; COST [148407] | 148,407.36 | 139,502.92 |
| TAEXSTCL060002 |  | Bedding Works | 3d | 2026-07-25 A | 2026-11-18 | TAEXSTCL060001, TAEXPTCL060002 | 80% | 0.6d | 2026-10-03 | 2026-10-06 | 80.2d | 0d | DUMP TRUCK [16 h]; EXCAVATOR [16 h]; LABOR [48 h]; DUMP TRUCK DRIVER [16 h]; EXCAVATOR OPERATOR [16 h]; COST [83945.3] | 83,945.28 | 67,156.22 |
| TAEXSTCL060003 |  | Install GRP Pipes & Fittings | 10d | 2026-07-26 A | 2026-11-19 | TAEXSTCL060002 | 85% | 1.5d | 2026-10-06 | 2026-10-18 | 80.2d | 0d | EXCAVATOR [80 h]; LABOR [80 h]; EXCAVATOR OPERATOR [80 h]; PLUMBER [160 h]; COST [52658] | 52,658 | 44,759.3 |
| TAEXSTCL060005 |  | Manhole Installation with backfilling | 14d | 2026-07-28 A | 2026-12-19 | TAEXSTCL060004 FF+10d, TAEXSTCL060003, TAPQDVST00061 | 75% | 3.5d | 2026-10-29 | 2026-11-15 | 80.2d | 51.24d | DUMP TRUCK [110 h]; EXCAVATOR [112 h]; LABOR [224 h]; DUMP TRUCK DRIVER [110 h]; EXCAVATOR OPERATOR [112 h]; PLUMBER [112 h]; MASON [224 h]; COST [105200] | 105,200 | 78,900 |
| TAEXSTCL060004 |  | Backfilling Works for Trench | 15d | 2026-08-11 A | 2026-12-07 | TAEXSTCL060003 FF+15d | 30% | 10.5d | 2026-10-21 | 2026-11-08 | 80.2d | 0d | DUMP TRUCK [56 h]; WATER TANKER [18 h]; EXCAVATOR [32 h]; LABOR [112 h]; DUMP TRUCK DRIVER [56 h]; WATER TANKER DRIVER [18 h]; EXCAVATOR OPERATOR [32 h]; COMPACTOR [30 h]; COST [95600] | 95,600 | 28,680 |
| TAEXSTCL060006 |  | Install Catch Basin with UPVC Pipes & Fittings | 12d | 2027-02-17 | 2027-03-03 | TAEXSTCL060005, TAEXSTCL070006 |  |  |  |  | 28.96d | 0d | EXCAVATOR [48 h]; LABOR [96 h]; EXCAVATOR OPERATOR [48 h]; PLUMBER [96 h]; COST [95220] | 95,220 |  |
| TAEXSTCL060007 |  | Leakage Test | 3d | 2027-03-03 | 2027-03-07 | TAEXSTCL060005, TAEXSTCL060006 |  |  |  |  | 28.96d | 0d | WATER TANKER [24 h]; LABOR [24 h]; WATER TANKER DRIVER [24 h]; PLUMBER [24 h]; COST [11200] | 11,200 |  |
|  | 2 | **Local Road 07** |  | 2026-01-21 | 2027-08-23 |  |  |  |  |  |  |  |  |  |  |
|  | 12 | **Road Works** |  | 2026-01-21 | 2027-07-29 |  |  |  |  |  |  |  |  |  |  |
| TAEXRDCL070001 |  | Road Excavation and Disposal | 8d | 2026-01-21 A | 2026-01-29 A | TAEXRDCL010001 FS+10d | 100% |  |  |  |  |  | DUMP TRUCK [320 h]; EXCAVATOR [160 h]; LABOR [80 h]; DUMP TRUCK DRIVER [320 h]; EXCAVATOR OPERATOR [160 h]; COST [93112] | 93,112 | 93,112 |
| TAEXRDCL070002 |  | Backfilling Works for Road | 66d | 2026-01-25 A | 2026-04-11 A | TAEXRDCL070001 | 100% |  |  |  |  |  | ROLEER [112 h]; DUMP TRUCK [224 h]; WATER TANKER [112 h]; EXCAVATOR [112 h]; GRADER [112 h]; LABOR [112 h]; GRADER OPERATOR [112 h]; DUMP TRUCK DRIVER [224 h]; WATER TANKER DRIVER [112 h]; EXCAVATOR OPERATOR [112 h]; ROLLER OPERATOR [112 h]; COST [55026] | 55,026 | 55,026 |
| TAEXRDCL070003 |  | Subgrade Works | 54d | 2026-02-08 A | 2026-04-11 A | TAEXRDCL070002 | 100% |  |  |  |  |  | ROLEER [56 h]; DUMP TRUCK [110 h]; WATER TANKER [56 h]; EXCAVATOR [56 h]; GRADER [56 h]; LABOR [56 h]; GRADER OPERATOR [56 h]; DUMP TRUCK DRIVER [110 h]; WATER TANKER DRIVER [56 h]; EXCAVATOR OPERATOR [56 h]; ROLLER OPERATOR [56 h]; COST [45648.2] | 45,648.16 | 45,648.16 |
| TAEXRDCL070004 |  | ABC aggregate Base Course Works | 3d | 2027-04-06 | 2027-04-10 | TAEXRDCL070003, TAEXSTCL070007 FS+40d, TAPQDVRD00011 |  |  |  |  | 27.4d | 0d | ROLEER [64 h]; DUMP TRUCK [240 h]; WATER TANKER [64 h]; EXCAVATOR [64 h]; GRADER [64 h]; LABOR [64 h]; GRADER OPERATOR [64 h]; DUMP TRUCK DRIVER [240 h]; WATER TANKER DRIVER [64 h]; EXCAVATOR OPERATOR [64 h]; ROLLER OPERATOR [64 h]; COST [266839] | 266,839 |  |
| TAEXRDCL070005 |  | MBC1 layer | 1d | 2027-04-10 | 2027-04-11 | TAEXRDCL070004 |  |  |  |  | 27.4d | 0d | MC1 sprinker [8 h]; MC DRIVER [8 h]; COST [2458] | 2,458 |  |
| TAEXRDCL070006 |  | BBC Base Course | 2d | 2027-04-11 | 2027-04-13 | TAEXRDCL070005 |  |  |  |  | 27.4d | 25.56d | ROLEER [48 h]; DUMP TRUCK [72 h]; MILLING MACHINE [24 h]; WHEEL ROLLER [48 h]; LABOR [100 h]; DUMP TRUCK DRIVER [72 h]; MILLING MACHINE OPERATOR [24 h]; WHEEL ROLLER OPERATOR [48 h]; ROLLER OPERATOR [48 h]; COST [1004278] | 1,004,278 |  |
| TAEXRDCL070008 |  | Precast Concret Kerps | 18d | 2027-05-19 | 2027-06-09 | TAEXRDCL070006, TAEXRDCL060008 |  |  |  |  | 2.5d | 0d | LABOR [580 h]; COST [345659] | 345,659 |  |
| TAEXRDCL070007 |  | BWC Asphalt Wearing Course with RC | 1d | 2027-06-09 | 2027-06-10 | TAEXRDCL070006, TAEXRDCL070008 |  |  |  |  | 3.5d | 0d | ROLEER [16 h]; DUMP TRUCK [32 h]; MILLING MACHINE [8 h]; WHEEL ROLLER [16 h]; LABOR [60 h]; DUMP TRUCK DRIVER [32 h]; MILLING MACHINE OPERATOR [8 h]; WHEEL ROLLER OPERATOR [16 h]; ROLLER OPERATOR [16 h]; COST [811511] | 811,511 |  |
| TAEXRDCL070009 |  | Precast Interlock Works | 16d | 2027-06-20 | 2027-07-08 | TAEXRDCL070008, TAEXRDCL070007 FS+8d |  |  |  |  | 3.5d | 0d | LABOR [240 h]; COST [712407] | 712,407 |  |
| TAEXRDCL070010 |  | Stone Paving works | 15d | 2027-07-08 | 2027-07-26 | TAEXRDCL070009 |  |  |  |  | 3.5d | 0d | DUMP TRUCK [64 h]; LABOR [160 h]; DUMP TRUCK DRIVER [64 h]; COST [35000] | 35,000 |  |
| TAEXRDCL070011 |  | Road Marking | 1d | 2027-07-26 | 2027-07-27 | TAEXRDCL070010 |  |  |  |  | 3.5d | 0d | LABOR [32 h]; COST [4100] | 4,100 |  |
| TAEXRDCL070012 |  | Traffic Sinage | 2d | 2027-07-27 | 2027-07-29 | TAEXRDCL070011 |  |  |  |  | 3.5d | 1.66d | EXCAVATOR [8 h]; LABOR [32 h]; EXCAVATOR OPERATOR [8 h]; COST [42000] | 42,000 |  |

| ID | WBS | Activity | Duration | Start | Finish | Predecessors | Complete | Remaining | Planned start | Planned finish | Total float | Free float | Resources | Cost | Actual cost |
| --- | --- | --- | --- | --- | --- | --- | --- | --- | --- | --- | --- | --- | --- | --- | --- |
|  | 1 | **Electrical Works** |  | 2027-05-30 | 2027-08-23 |  |  |  |  |  |  |  |  |  |  |
| TAEXELCL070001 |  | Trench Cut off | 12d | 2027-05-30 | 2027-06-13 | TAEXELCL060001 |  |  |  |  | -29.3d | 0d | DUMP TRUCK [160 h]; EXCAVATOR [96 h]; LABOR [48 h]; DUMP TRUCK DRIVER [160 h]; EXCAVATOR OPERATOR [96 h]; COST [30176.2] | 30,176.25 |  |
| TAEXELCL070002 |  | Drawpit and PVC Pipes Installation | 8d | 2027-06-13 | 2027-06-22 | TAEXELCL070001, TAPQDVEL0005 |  |  |  |  | 12.85d | 0d | ELECTRACIAN [80 h]; EXCAVATOR [40 h]; LABOR [40 h]; EXCAVATOR OPERATOR [40 h]; COST [4560] | 4,560 |  |
| TAEXELCL070003 |  | Road Crossing Ducts | 2d | 2027-06-22 | 2027-06-24 | TAEXELCL070002 |  |  |  |  | 12.85d | 0d | DUMP TRUCK [40 h]; EXCAVATOR [40 h]; DUMP TRUCK DRIVER [40 h]; EXCAVATOR OPERATOR [40 h]; COST [260] | 260 |  |
| TAEXELCL070006 |  | Poles RC Foundation | 3d | 2027-06-22 | 2027-06-26 | TAEXELCL070002, TAPQDVEL0005 |  |  |  |  | 24.85d | 0d | EXCAVATOR [40 h]; LABOR [40 h]; EXCAVATOR OPERATOR [40 h]; COST [9510] | 9,510 |  |
| TAEXELCL070004 |  | Trench Backfilling | 10d | 2027-06-24 | 2027-07-06 | TAEXELCL070003 |  |  |  |  | 12.85d | 0d | DUMP TRUCK [60 h]; WATER TANKER [20 h]; EXCAVATOR [30 h]; LABOR [60 h]; DUMP TRUCK DRIVER [60 h]; WATER TANKER DRIVER [20 h]; EXCAVATOR OPERATOR [30 h]; COMPACTOR [30 h]; COST [10530] | 10,530 |  |
| TAEXELCL070008 |  | Lighting Pole Installation with Luminares | 5d | 2027-06-26 | 2027-07-01 | TAEXELCL070006 |  |  |  |  | 26.85d | 56.15d | ELECTRACIAN [40 h]; CRANE [40 h]; CRANE OPERATOR [40 h]; COST [91500] | 91,500 |  |
| TAEXELCL070005 |  | Cables Pulling | 3d | 2027-07-06 | 2027-07-10 | TAEXELCL070002, TAEXELCL070003, TAEXELCL070004 |  |  |  |  | 12.85d | 36d | ELECTRACIAN [120 h]; LABOR [160 h]; COST [368000] | 368,000 |  |
| TAEXELCL070007 |  | Earthing cables | 2d | 2027-08-21 | 2027-08-23 | TAEXELCL070006, TAEXELCL070005, TAEXELCL060007 |  |  |  |  | -23.15d | 0d | ELECTRACIAN [80 h]; LABOR [40 h]; COST [2320] | 2,320 |  |
|  | 2 | **Telecommunication Works** |  | 2027-06-01 | 2027-07-07 |  |  |  |  |  |  |  |  |  |  |
| TAEXTCCL070001 |  | Trench Cut off | 6d | 2027-06-01 | 2027-06-08 | TAEXTCCL060001 |  |  |  |  | -17.61d | 0d | DUMP TRUCK [96 h]; EXCAVATOR [48 h]; LABOR [35 h]; DUMP TRUCK DRIVER [96 h]; EXCAVATOR OPERATOR [48 h]; COST [9500] | 9,500 |  |
| TAEXTCCL070002 |  | Drawpit and PVC Pipes Installation | 4d | 2027-06-19 | 2027-06-23 | TAEXTCCL070001, TAEXTCCL060002 |  |  |  |  | -20.27d | 0d | ELECTRACIAN [80 h]; EXCAVATOR [32 h]; LABOR [16 h]; EXCAVATOR OPERATOR [32 h]; COST [80250] | 80,250 |  |
| TAEXTCCL070003 |  | Road Crossing Ducts | 2d | 2027-06-23 | 2027-06-26 | TAEXTCCL070002 |  |  |  |  | 20.73d | 0d | DUMP TRUCK [32 h]; EXCAVATOR [16 h]; DUMP TRUCK DRIVER [32 h]; EXCAVATOR OPERATOR [16 h]; COST [8600] | 8,600 |  |
| TAEXTCCL070004 |  | Trench Backfilling | 10d | 2027-06-26 | 2027-07-07 | TAEXTCCL070003 |  |  |  |  | 20.73d | 41d | DUMP TRUCK [140 h]; WATER TANKER [80 h]; EXCAVATOR [80 h]; LABOR [160 h]; DUMP TRUCK DRIVER [140 h]; WATER TANKER DRIVER [80 h]; EXCAVATOR OPERATOR [80 h]; COMPACTOR [80 h]; COST [26430] | 26,430 |  |
|  | 18 | **CCTV Works** |  | 2027-05-22 | 2027-07-12 |  |  |  |  |  |  |  |  |  |  |
| TAEXCCCL070001 |  | Pipe Installation with manhole | 9d | 2027-05-22 | 2027-06-01 | TAEXCCCL060001 |  |  |  |  | -14.55d | 0d | ELECTRACIAN [96 h]; LABOR [192 h]; COST [23962] | 23,962 |  |
| TAEXCCCL070002 |  | CCTV Swiches Lighting panels Installation | 12d | 2027-06-01 | 2027-06-15 | TAEXCCCL070001 |  |  |  |  | 26.45d | 0d | ELECTRACIAN [330 h]; EXCAVATOR [40 h]; LABOR [330 h]; EXCAVATOR OPERATOR [40 h]; COST [2264] | 2,264 |  |
| TAEXCCCL070003 |  | Cable laying and connected with Panels | 10d | 2027-06-15 | 2027-06-27 | TAEXCCCL070002 |  |  |  |  | 26.45d | 0d | ELECTRACIAN [160 h]; LABOR [160 h]; COST [19654] | 19,654 |  |
| TAEXCCCL070004 |  | Pole Installation with IP Outdoor CCTV POE Camera | 13d | 2027-06-27 | 2027-07-12 | TAEXCCCL070003 |  |  |  |  | 26.45d | 42.72d | ELECTRACIAN [96 h]; EXCAVATOR [32 h]; LABOR [96 h]; EXCAVATOR OPERATOR [32 h]; COST [4534] | 4,534 |  |
|  | 3 | **Potable Networks** |  | 2026-04-22 | 2027-04-22 |  |  |  |  |  |  |  |  |  |  |
| TAEXPTCL070001 |  | Excavation works for Trench | 4d | 2026-04-22 A | 2026-04-26 A | TAEXPTCL050001 | 100% |  |  |  |  |  | DUMP TRUCK [90 h]; EXCAVATOR [45 h]; LABOR [30 h]; DUMP TRUCK DRIVER [90 h]; EXCAVATOR OPERATOR [45 h]; COST [54444.1] | 54,444.14 | 54,444.14 |
| TAEXPTCL070002 |  | Bedding Works | 2d | 2026-06-29 A | 2026-10-25 | TAEXPTCL0700011 | 44% | 1.12d | 2026-08-02 | 2026-08-04 | 156.2d | 1.98d | DUMP TRUCK [16 h]; EXCAVATOR [16 h]; LABOR [32 h]; DUMP TRUCK DRIVER [16 h]; EXCAVATOR OPERATOR [16 h]; COST [22735.9] | 22,735.92 | 10,003.8 |
| TAEXPTCL070003 |  | Install Pipes & Fittings | 8d | 2026-06-30 A | 2027-01-23 | TAEXPTCL070002, TAEXPTCL060003 | 44% | 4.48d | 2027-01-20 | 2027-01-28 | 84.06d | 0d | LABOR [128 h]; PLUMBER [64 h]; COST [78112] | 78,112 | 34,369.28 |
| TAEXPTCL070004 |  | Backfilling Works for Trench | 13d | 2026-08-30 A | 2027-01-31 | TAEXPTCL070003, TAEXTSCL0700041 | 44% | 7.28d | 2027-01-16 | 2027-01-31 | 117.73d | 0d | DUMP TRUCK [120 h]; WATER TANKER [70 h]; EXCAVATOR [70 h]; LABOR [30 h]; DUMP TRUCK DRIVER [120 h]; WATER TANKER DRIVER [70 h]; EXCAVATOR OPERATOR [70 h]; COMPACTOR [40 h]; COST [22050] | 22,050 | 9,702 |
| TAEXPTCL070005 |  | Install Valves with fittings | 4d | 2026-09-27 A | 2027-01-31 | TAEXPTCL070004 FF, TAPQDVPT00021, TAEXPTCL010005 | 15% | 3.4d | 2027-01-10 | 2027-01-14 | 117.73d | 0d | LABOR [64 h]; PLUMBER [64 h]; COST [9600] | 9,600 | 1,440 |
| TAEXPTCL0700011 |  | Excavation works for Trench Part 01 | 4d | 2026-10-19 | 2026-10-24 | TAEXPTCL070001, TAEXPTCL0900011 |  |  |  |  | 6.46d | 0d | DUMP TRUCK [90 h]; EXCAVATOR [45 h]; LABOR [30 h]; DUMP TRUCK DRIVER [90 h]; EXCAVATOR OPERATOR [45 h]; COST [2865.48] | 2,865.48 |  |
| TAEXPTCL070006 |  | Install fire hydrent | 5d | 2027-01-23 | 2027-01-28 | TAEXPTCL070003, TAEXPTCL010006 |  |  |  |  | 84.06d | 0d | LABOR [80 h]; PLUMBER [40 h]; COST [22400] | 22,400 |  |
| TAEXPTCL070007 |  | Valve Chamber works | 14d | 2027-04-01 | 2027-04-18 | TAEXPTCL070006, TAEXPTCL060007 |  |  |  |  | 62.04d | 0d | WATER TANKER [20 h]; EXCAVATOR [60 h]; CONCRET MIXER [60 h]; LABOR [120 h]; WATER TANKER DRIVER [20 h]; EXCAVATOR OPERATOR [60 h]; PLUMBER [60 h]; STEEL FIXER [60 h]; CARPENTER [30 h]; MASON [60 h]; CONCRET MIXER OPERATOR [60 h]; COST [22100] | 22,100 |  |
| TAEXPTCL070008 |  | Inspection Test | 4d | 2027-04-18 | 2027-04-22 | TAEXPTCL070007 |  |  |  |  | 89.84d | 27.8d | WATER TANKER [32 h]; LABOR [32 h]; WATER TANKER DRIVER [32 h]; PLUMBER [32 h]; COST [4005] | 4,005 |  |

| ID | WBS | Activity | Duration | Start | Finish | Predecessors | Complete | Remaining | Planned start | Planned finish | Total float | Free float | Resources | Cost | Actual cost |
| --- | --- | --- | --- | --- | --- | --- | --- | --- | --- | --- | --- | --- | --- | --- | --- |
|  | 4 | **TSE Networks** |  | 2026-03-23 | 2027-06-01 |  |  |  |  |  |  |  |  |  |  |
| TAEXTSCL070001 |  | Excavation works for Trench | 4d | 2026-03-23 A | 2026-03-27 A | TAEXTSCL050001 | 100% |  | 2026-03-23 | 2026-03-26 |  |  | DUMP TRUCK [96 h]; EXCAVATOR [64 h]; LABOR [16 h]; DUMP TRUCK DRIVER [96 h]; EXCAVATOR OPERATOR [64 h]; COST [50027.5] | 50,027.51 | 50,027.51 |
| TAEXTSCL070002 |  | Bedding Works | 1d | 2026-04-15 A | 2026-04-15 A | TAEXTSCL070001 | 100% |  |  |  |  |  | DUMP TRUCK [16 h]; EXCAVATOR [16 h]; LABOR [32 h]; DUMP TRUCK DRIVER [16 h]; EXCAVATOR OPERATOR [16 h]; COST [3375] | 3,375 | 3,375 |
| TAEXTSCL070003 |  | Install Pipes & Fittings | 5d | 2026-04-15 A | 2026-04-20 A | TAEXTSCL070002 | 100% |  |  |  |  |  | LABOR [128 h]; PLUMBER [128 h]; COST [54225] | 54,225 | 54,225 |
| TAEXTSCL070004 |  | Backfilling Works for Trench | 9d | 2026-04-21 A | 2026-04-30 A | TAEXTSCL070003 | 100% |  |  |  |  |  | DUMP TRUCK [190 h]; WATER TANKER [104 h]; EXCAVATOR [104 h]; LABOR [105 h]; DUMP TRUCK DRIVER [190 h]; WATER TANKER DRIVER [104 h]; EXCAVATOR OPERATOR [104 h]; COMPACTOR [128 h]; COST [16725] | 16,725 | 16,725 |
| TAEXTSCL070005 |  | Install Valves with fittings | 4d | 2026-09-27 A | 2027-05-12 | TAEXTSCL0700041 FF, TAEXTSCL090005, TAEXTSCL060005 | 15% | 3.4d | 2027-04-22 | 2027-04-27 | 55.54d | 0d | LABOR [64 h]; PLUMBER [64 h]; COST [7200] | 7,200 | 1,080 |
| TAEXTSCL070006 |  | Valve Chamber works | 15d | 2026-09-27 A | 2027-05-27 | TAEXTSCL070005 | 15% | 12.75d | 2027-04-27 | 2027-05-15 | 55.54d | 0d | WATER TANKER [60 h]; EXCAVATOR [60 h]; CONCRET MIXER [60 h]; LABOR [120 h]; WATER TANKER DRIVER [60 h]; EXCAVATOR OPERATOR [60 h]; PLUMBER [120 h]; STEEL FIXER [120 h]; CARPENTER [120 h]; MASON [120 h]; CONCRET MIXER OPERATOR [60 h]; COST [38620] | 38,620 | 5,793 |
| TAEXTSCL0700011 |  | Excavation works for Trench Part 01 | 4d | 2026-10-22 | 2026-10-27 | TAEXTSCL0100011 |  |  |  |  | 8.34d | 0d | DUMP TRUCK [96 h]; EXCAVATOR [64 h]; LABOR [16 h]; DUMP TRUCK DRIVER [96 h]; EXCAVATOR OPERATOR [64 h]; COST [16675.8] | 16,675.83 |  |
| TAEXTSCL0700021 |  | Bedding Works Part 01 | 1d | 2026-10-27 | 2026-10-28 | TAEXTSCL070002, TAEXTSCL0700011, TAEXSWCL070001, TAEXPTCL070002 |  |  |  |  | 172.45d | 0d | DUMP TRUCK [16 h]; EXCAVATOR [16 h]; LABOR [32 h]; DUMP TRUCK DRIVER [16 h]; EXCAVATOR OPERATOR [16 h]; COST [1125] | 1,125 |  |
| TAEXTSCL0700031 |  | Install Pipes & Fittings Part 01 | 5d | 2026-10-28 | 2026-11-03 | TAEXTSCL0700021, TAEXTSCL070003 |  |  |  |  | 172.45d | 0d | LABOR [128 h]; PLUMBER [128 h]; COST [18075] | 18,075 |  |
| TAEXTSCL0700041 |  | Backfilling Works for Trench Part 01 | 8d | 2026-11-03 | 2026-11-12 | TAEXTSCL0700031, TAEXTSCL070004 |  |  |  |  | 178.37d | 60.64d | DUMP TRUCK [190 h]; WATER TANKER [104 h]; EXCAVATOR [104 h]; LABOR [105 h]; DUMP TRUCK DRIVER [190 h]; WATER TANKER DRIVER [104 h]; EXCAVATOR OPERATOR [104 h]; COMPACTOR [128 h]; COST [5575] | 5,575 |  |
| TAEXTSCL070007 |  | Inspection Test | 4d | 2027-05-27 | 2027-06-01 | TAEXTSCL070006 |  |  |  |  | 55.54d | 4.12d | WATER TANKER [32 h]; LABOR [64 h]; WATER TANKER DRIVER [32 h]; PLUMBER [64 h]; COST [5650] | 5,650 |  |
|  | 15 | **Sewerage Networks** |  | 2026-06-09 | 2026-12-10 |  |  |  |  |  |  |  |  |  |  |
| TAEXSWCL070001 |  | Excavation works for Trench | 28d | 2026-06-09 A | 2026-10-10 A | TAEXSWCC0100011 | 100% |  | 2026-11-29 | 2026-12-31 |  |  | DUMP TRUCK [176 h]; EXCAVATOR [88 h]; LABOR [44 h]; DUMP TRUCK DRIVER [176 h]; EXCAVATOR OPERATOR [88 h]; COST [64670] | 64,670 | 64,670 |
| TAEXSWCL070002 |  | Bedding Works | 3d | 2026-08-29 A | 2026-10-10 A | TAEXSWCL070001, TAEXPTCL070002 | 100% |  | 2026-09-19 | 2026-09-22 |  |  | DUMP TRUCK [16 h]; EXCAVATOR [16 h]; LABOR [48 h]; DUMP TRUCK DRIVER [16 h]; EXCAVATOR OPERATOR [16 h]; COST [26944.5] | 26,944.45 | 26,944.45 |
| TAEXSWCL070003 |  | Install GRP Pipes & Fittings | 8d | 2026-08-30 A | 2026-10-17 A | TAEXSWCL070002 | 100% |  | 2026-09-22 | 2026-10-01 |  |  | EXCAVATOR [64 h]; LABOR [112 h]; EXCAVATOR OPERATOR [64 h]; PLUMBER [64 h]; COST [98700] | 98,700 | 98,700 |
| TAEXSWCL070005 |  | Manhole Installation with backfilling | 12d | 2026-09-10 A | 2026-12-07 | TAEXSWCL070004 FF+10d, TAEXSWCL070003, TAPQDVSW00021 | 90% | 1.2d | 2026-11-01 | 2026-11-15 | 198.15d | 0d | DUMP TRUCK [48 h]; EXCAVATOR [24 h]; LABOR [96 h]; DUMP TRUCK DRIVER [48 h]; EXCAVATOR OPERATOR [24 h]; PLUMBER [32 h]; MASON [32 h]; COST [74650] | 74,650 | 67,185 |
| TAEXSWCL070004 |  | Backfilling Works for Trench | 14d | 2026-10-26 | 2026-11-11 | TAEXSWCL070003 FF+15d |  |  |  |  | 210.2d | 12.05d | DUMP TRUCK [56 h]; WATER TANKER [20 h]; EXCAVATOR [32 h]; LABOR [56 h]; DUMP TRUCK DRIVER [56 h]; WATER TANKER DRIVER [20 h]; EXCAVATOR OPERATOR [32 h]; COMPACTOR [30 h]; COST [70350] | 70,350 |  |
| TAEXSWCL070006 |  | Leakage Test | 3d | 2026-12-07 | 2026-12-10 | TAEXSWCL070005 |  |  |  |  | 198.15d | 75.44d | WATER TANKER [24 h]; LABOR [48 h]; WATER TANKER DRIVER [24 h]; PLUMBER [24 h]; COST [23436.2] | 23,436.15 |  |
|  | 5 | **Storm Networks** |  | 2026-02-15 | 2027-02-18 |  |  |  |  |  |  |  |  |  |  |
| TAEXSTCL070001 |  | Excavation works for Trench | 6d | 2026-02-15 A | 2026-02-21 A | TAEXSTCL030001 | 100% |  |  |  |  |  | DUMP TRUCK [172 h]; EXCAVATOR [88 h]; LABOR [44 h]; DUMP TRUCK DRIVER [172 h]; EXCAVATOR OPERATOR [88 h]; COST [150896] | 150,896 | 150,896 |
| TAEXSTCL070002 |  | Bedding Works | 1d | 2026-03-05 A | 2026-03-06 A | TAEXSTCL070001 | 100% |  | 2026-03-05 | 2026-03-05 |  |  | DUMP TRUCK [16 h]; EXCAVATOR [16 h]; LABOR [48 h]; DUMP TRUCK DRIVER [16 h]; EXCAVATOR OPERATOR [16 h]; COST [67156.2] | 67,156.22 | 67,156.22 |
| TAEXSTCL070003 |  | Install GRP Pipes & Fittings | 6d | 2026-03-14 A | 2026-03-19 A | TAEXSTCL070002 | 100% |  |  |  |  |  | EXCAVATOR [64 h]; LABOR [64 h]; EXCAVATOR OPERATOR [64 h]; PLUMBER [112 h]; COST [223972] | 223,972.5 | 223,972.5 |
| TAEXSTCL070004 |  | Backfilling Works for Trench | 10d | 2026-04-04 A | 2026-04-14 A | TAEXSTCL070003 | 100% |  |  |  |  |  | DUMP TRUCK [112 h]; WATER TANKER [28 h]; EXCAVATOR [56 h]; LABOR [112 h]; DUMP TRUCK DRIVER [112 h]; WATER TANKER DRIVER [28 h]; EXCAVATOR OPERATOR [56 h]; COMPACTOR [32 h]; COST [145125] | 145,125 | 145,125 |
| TAEXSTCL070005 |  | Manhole Installation with backfilling | 10d | 2026-04-12 A | 2026-04-22 A | TAEXSTCL070004 FF+10d, TAEXSTCL070003 | 100% |  |  |  |  |  | DUMP TRUCK [50 h]; EXCAVATOR [25 h]; LABOR [80 h]; DUMP TRUCK DRIVER [50 h]; EXCAVATOR OPERATOR [25 h]; PLUMBER [50 h]; MASON [50 h]; COST [74722.5] | 74,722.5 | 74,722.5 |
| TAEXSTCL070007 |  | Leakage Test | 3d | 2026-10-17 A | 2027-02-18 | TAEXSTCL070006, TAEXSTCL0700051 | 50% | 1.5d | 2027-02-18 | 2027-02-22 | 27.4d | 0d | WATER TANKER [24 h]; LABOR [24 h]; WATER TANKER DRIVER [24 h]; PLUMBER [24 h]; COST [11200] | 11,200 | 5,600 |
| TAEXSTCL0700011 |  | Excavation works for Trench Part 01 | 4d | 2026-10-25 | 2026-10-29 | TAEXSTCL070001, TAEXSTCU21000611 |  |  |  |  | 20.33d | 0d | DUMP TRUCK [172 h]; EXCAVATOR [88 h]; LABOR [44 h]; DUMP TRUCK DRIVER [172 h]; EXCAVATOR OPERATOR [88 h]; COST [37724] | 37,724 |  |
| TAEXSTCL0700021 |  | Bedding Works Part 01 | 1d | 2026-10-29 | 2026-10-31 | TAEXSTCL070002, TAEXSTCL0700011 |  |  |  |  | 81.43d | 0d | DUMP TRUCK [16 h]; EXCAVATOR [16 h]; LABOR [48 h]; DUMP TRUCK DRIVER [16 h]; EXCAVATOR OPERATOR [16 h]; COST [16789.1] | 16,789.06 |  |
| TAEXSTCL0700031 |  | Install GRP Pipes & Fittings Part 01 | 5d | 2026-10-31 | 2026-11-05 | TAEXSTCL070003, TAEXSTCL070003 FF, TAEXSTCL0700021 |  |  |  |  | 81.43d | 0d | EXCAVATOR [64 h]; LABOR [64 h]; EXCAVATOR OPERATOR [64 h]; PLUMBER [112 h]; COST [74657.5] | 74,657.5 |  |
| TAEXSTCL0700041 |  | Backfilling Works for Trench Part 01 | 8d | 2026-11-14 | 2026-11-23 | TAEXSTCL0700031 FF+15d, TAEXSTCL070004 |  |  |  |  | 81.43d | 11.53d | DUMP TRUCK [112 h]; WATER TANKER [28 h]; EXCAVATOR [56 h]; LABOR [112 h]; DUMP TRUCK DRIVER [112 h]; WATER TANKER DRIVER [28 h]; EXCAVATOR OPERATOR [56 h]; COMPACTOR [32 h]; COST [48375] | 48,375 |  |
| TAEXSTCL0700051 |  | Manhole Installation with backfilling Part 01 | 5d | 2026-12-12 | 2026-12-17 | TAEXSTCL0700041 FF+10d, TAEXSTCL070005, TAPQDVST00061 |  |  |  |  | 69.9d | 42.5d | DUMP TRUCK [50 h]; EXCAVATOR [25 h]; LABOR [80 h]; DUMP TRUCK DRIVER [50 h]; EXCAVATOR OPERATOR [25 h]; PLUMBER [50 h]; MASON [50 h]; COST [24907.5] | 24,907.5 |  |
| TAEXSTCL070006 |  | Install Catch Basin with UPVC Pipes & Fittings | 10d | 2027-02-06 | 2027-02-17 | TAEXSTCL0700051, TAEXSTCC020006 |  |  |  |  | 27.4d | 0d | EXCAVATOR [40 h]; LABOR [80 h]; EXCAVATOR OPERATOR [40 h]; PLUMBER [80 h]; COST [90200] | 90,200 |  |

| ID | WBS | Activity | Duration | Start | Finish | Predecessors | Complete | Planned start | Planned finish | Total float | Free float | Resources | Cost | Actual cost |
| --- | --- | --- | --- | --- | --- | --- | --- | --- | --- | --- | --- | --- | --- | --- |
|  | 6 | **Local Road 08** |  | 2026-01-12 | 2027-08-25 |  |  |  |  |  |  |  |  |  |
|  | 12 | **Road Works** |  | 2026-01-12 | 2027-07-28 |  |  |  |  |  |  |  |  |  |
| TAEXRDCL080001 |  | Road Excavation and Disposal | 8d | 2026-01-12 A | 2026-01-20 A | TAEXRDCL060001 | 100% |  |  |  |  | DUMP TRUCK [320 h]; EXCAVATOR [160 h]; LABOR [80 h]; DUMP TRUCK DRIVER [320 h]; EXCAVATOR OPERATOR [160 h]; COST [115226] | 115,226.1 | 115,226.1 |
| TAEXRDCL080002 |  | Backfilling Works for Road | 8d | 2026-01-29 A | 2026-02-07 A | TAEXRDCL080001 | 100% |  |  |  |  | ROLEER [112 h]; DUMP TRUCK [224 h]; WATER TANKER [112 h]; EXCAVATOR [112 h]; GRADER [112 h]; LABOR [112 h]; GRADER OPERATOR [112 h]; DUMP TRUCK DRIVER [224 h]; WATER TANKER DRIVER [112 h]; EXCAVATOR OPERATOR [112 h]; ROLLER OPERATOR [112 h]; COST [181521] | 181,520.6 | 181,520.6 |
| TAEXRDCL080003 |  | Subgrade Works | 4d | 2026-02-08 A | 2026-02-11 A | TAEXRDCL080002 | 100% |  |  |  |  | ROLEER [240 h]; DUMP TRUCK [240 h]; WATER TANKER [120 h]; EXCAVATOR [120 h]; GRADER [240 h]; LABOR [240 h]; GRADER OPERATOR [240 h]; DUMP TRUCK DRIVER [240 h]; WATER TANKER DRIVER [120 h]; EXCAVATOR OPERATOR [120 h]; ROLLER OPERATOR [240 h]; COST [68039.6] | 68,039.58 | 68,039.58 |
| TAEXRDCL080000 |  | Asphalt Milling and Deisposal | 4d | 2026-07-25 A | 2026-07-26 A | TAEXRDCL060000 | 100% | 2027-02-18 | 2027-02-23 |  |  | DUMP TRUCK [64 h]; MILLING MACHINE [64 h]; DUMP TRUCK DRIVER [64 h]; MILLING MACHINE OPERATOR [64 h]; COST [99400] | 99,400 | 99,400 |
| TAEXRDCL0800011 |  | Road Excavation and Disposal Part 01 | 5d | 2027-03-07 | 2027-03-13 | TAEXRDCL080000 |  |  |  | 34.9d | 0d | DUMP TRUCK [320 h]; EXCAVATOR [160 h]; LABOR [80 h]; DUMP TRUCK DRIVER [320 h]; EXCAVATOR OPERATOR [160 h]; COST [1163.9] | 1,163.9 |  |
| TAEXRDCL0800021 |  | Backfilling Works for Road Part 01 | 7d | 2027-03-13 | 2027-03-21 | TAEXRDCL080002, TAEXRDCL0800011 |  |  |  | 34.9d | 0d | ROLEER [112 h]; DUMP TRUCK [224 h]; WATER TANKER [112 h]; EXCAVATOR [112 h]; GRADER [112 h]; LABOR [112 h]; GRADER OPERATOR [112 h]; DUMP TRUCK DRIVER [224 h]; WATER TANKER DRIVER [112 h]; EXCAVATOR OPERATOR [112 h]; ROLLER OPERATOR [112 h]; COST [15784.4] | 15,784.4 |  |
| TAEXRDCL0800031 |  | Subgrade Works Part 01 | 4d | 2027-03-21 | 2027-03-25 | TAEXRDCL080003, TAEXRDCL0800021 |  |  |  | 34.9d | 0d | ROLEER [240 h]; DUMP TRUCK [240 h]; WATER TANKER [120 h]; EXCAVATOR [120 h]; GRADER [240 h]; LABOR [240 h]; GRADER OPERATOR [240 h]; DUMP TRUCK DRIVER [240 h]; WATER TANKER DRIVER [120 h]; EXCAVATOR OPERATOR [120 h]; ROLLER OPERATOR [240 h]; COST [68039.6] | 68,039.58 |  |
| TAEXRDCL080004 |  | ABC aggregate Base Course Works | 4d | 2027-03-25 | 2027-03-30 | TAEXSTCL080007, TAEXRDCL0800031, TAPQDVRD00011 |  |  |  | 34.9d | 0d | ROLEER [64 h]; DUMP TRUCK [240 h]; WATER TANKER [64 h]; EXCAVATOR [64 h]; GRADER [64 h]; LABOR [64 h]; GRADER OPERATOR [64 h]; DUMP TRUCK DRIVER [240 h]; WATER TANKER DRIVER [64 h]; EXCAVATOR OPERATOR [64 h]; ROLLER OPERATOR [64 h]; COST [655786] | 655,786 |  |
| TAEXRDCL080005 |  | MBC1 layer | 1d | 2027-03-30 | 2027-03-31 | TAEXRDCL080004 |  |  |  | 34.9d | 0d | MC1 sprinker [8 h]; MC DRIVER [8 h]; COST [9832] | 9,832 |  |
| TAEXRDCL080006 |  | BBC Base Course | 4d | 2027-03-31 | 2027-04-05 | TAEXRDCL080005 |  |  |  | 34.9d | 33.06d | ROLEER [48 h]; DUMP TRUCK [72 h]; MILLING MACHINE [24 h]; WHEEL ROLLER [48 h]; LABOR [100 h]; DUMP TRUCK DRIVER [72 h]; MILLING MACHINE OPERATOR [24 h]; WHEEL ROLLER OPERATOR [48 h]; ROLLER OPERATOR [48 h]; COST [1075760] | 1,075,760 |  |
| TAEXRDCL080008 |  | Precast Concret Kerps | 14d | 2027-06-09 | 2027-06-26 | TAEXRDCL080006, TAEXRDCL070008 |  |  |  | 2.5d | 0d | LABOR [600 h]; COST [401420] | 401,420 |  |
| TAEXRDCL080007 |  | BWC Asphalt Wearing Course with RC | 1d | 2027-06-26 | 2027-06-27 | TAEXRDCL080006, TAEXRDCL080008 |  |  |  | 4.5d | 0d | ROLEER [16 h]; DUMP TRUCK [32 h]; MILLING MACHINE [8 h]; WHEEL ROLLER [16 h]; LABOR [40 h]; DUMP TRUCK DRIVER [32 h]; MILLING MACHINE OPERATOR [8 h]; WHEEL ROLLER OPERATOR [16 h]; ROLLER OPERATOR [16 h]; COST [111511] | 111,511 |  |
| TAEXRDCL080009 |  | Precast Interlock Works | 17d | 2027-06-27 | 2027-07-17 | TAEXRDCL080008, TAEXRDCL080007 |  |  |  | 4.5d | 0d | LABOR [260 h]; COST [175671] | 175,671 |  |
| TAEXRDCL080010 |  | Stone Paving works | 7d | 2027-07-17 | 2027-07-25 | TAEXRDCL080009 |  |  |  | 4.5d | 0d | DUMP TRUCK [32 h]; LABOR [48 h]; DUMP TRUCK DRIVER [32 h]; COST [38120] | 38,120 |  |
| TAEXRDCL080011 |  | Road Marking | 1d | 2027-07-25 | 2027-07-26 | TAEXRDCL080010 |  |  |  | 4.5d | 0d | LABOR [32 h]; COST [4100] | 4,100 |  |
| TAEXRDCL080012 |  | Traffic Sinage | 2d | 2027-07-26 | 2027-07-28 | TAEXRDCL080011 |  |  |  | 4.5d | 2.66d | EXCAVATOR [8 h]; LABOR [32 h]; EXCAVATOR OPERATOR [8 h]; COST [42000] | 42,000 |  |
|  | 1 | **Electrical Works** |  | 2026-09-01 | 2027-08-25 |  |  |  |  |  |  |  |  |  |
| TAEXELCL080009 |  | Install Substation & RMU | 9d | 2026-09-01 A | 2026-09-02 A | TAEXELCL080005, TAPQDVEL0004 | 100% | 2027-06-27 | 2027-07-07 |  |  | ELECTRACIAN [40 h]; CRANE [40 h]; CRANE OPERATOR [40 h]; COST [80000] | 80,000 | 80,000 |
| TAEXELCL080001 |  | Trench Cut off | 10d | 2027-06-13 | 2027-06-24 | TAEXELCL070001 |  |  |  | -29.3d | 0d | DUMP TRUCK [160 h]; EXCAVATOR [80 h]; LABOR [40 h]; DUMP TRUCK DRIVER [160 h]; EXCAVATOR OPERATOR [80 h]; COST [27926.2] | 27,926.25 |  |
| TAEXELCL080002 |  | Drawpit and PVC Pipes Installation | 5d | 2027-06-24 | 2027-06-30 | TAEXELCL080001, TAPQDVEL0005 |  |  |  | 3.85d | 0d | ELECTRACIAN [80 h]; EXCAVATOR [40 h]; LABOR [40 h]; EXCAVATOR OPERATOR [40 h]; COST [5280] | 5,280 |  |
| TAEXELCL080003 |  | Road Crossing Ducts | 2d | 2027-06-30 | 2027-07-03 | TAEXELCL080002 |  |  |  | 3.85d | 0d | DUMP TRUCK [40 h]; EXCAVATOR [40 h]; DUMP TRUCK DRIVER [40 h]; EXCAVATOR OPERATOR [40 h]; COST [260] | 260 |  |
| TAEXELCL080006 |  | Poles RC Foundation | 4d | 2027-06-30 | 2027-07-05 | TAEXELCL080002, TAPQDVEL0005 |  |  |  | 17.85d | 0d | EXCAVATOR [40 h]; LABOR [40 h]; EXCAVATOR OPERATOR [40 h]; COST [12500] | 12,500 |  |
| TAEXELCL080004 |  | Trench Backfilling | 14d | 2027-07-03 | 2027-07-19 | TAEXELCL080003 |  |  |  | 3.85d | 0d | DUMP TRUCK [60 h]; WATER TANKER [20 h]; EXCAVATOR [30 h]; LABOR [60 h]; DUMP TRUCK DRIVER [60 h]; WATER TANKER DRIVER [20 h]; EXCAVATOR OPERATOR [30 h]; COMPACTOR [30 h]; COST [14230] | 14,230 |  |
| TAEXELCL080008 |  | Lighting Pole Installation with Luminares | 6d | 2027-07-05 | 2027-07-12 | TAEXELCL080006 |  |  |  | 17.85d | 47.15d | ELECTRACIAN [40 h]; CRANE [40 h]; CRANE OPERATOR [40 h]; COST [52050] | 52,050 |  |
| TAEXELCL080005 |  | Cables Pulling | 3d | 2027-07-19 | 2027-07-22 | TAEXELCL080002, TAEXELCL080003, TAEXELCL080004 |  |  |  | 3.85d | 0d | ELECTRACIAN [120 h]; LABOR [160 h]; COST [168000] | 168,000 |  |
| TAEXELCL080007 |  | Earthing cables | 2d | 2027-08-23 | 2027-08-25 | TAEXELCL080006, TAEXELCL080005, TAEXELCL070007 |  |  |  | -23.15d | 0d | ELECTRACIAN [80 h]; LABOR [40 h]; COST [2320] | 2,320 |  |

| ID | WBS | Activity | Duration | Start | Finish | Predecessors | Complete | Remaining | Planned start | Planned finish | Total float | Free float | Resources | Cost | Actual cost |
| --- | --- | --- | --- | --- | --- | --- | --- | --- | --- | --- | --- | --- | --- | --- | --- |
|  | 2 | **Telecommunication Works** |  | 2027-06-08 | 2027-07-18 |  |  |  |  |  |  |  |  |  |  |
| TAEXTCCL080001 |  | Trench Cut off | 10d | 2027-06-08 | 2027-06-20 | TAEXTCCL070001 |  |  |  |  | -17.61d | 0d | DUMP TRUCK [150 h]; EXCAVATOR [80 h]; LABOR [40 h]; DUMP TRUCK DRIVER [150 h]; EXCAVATOR OPERATOR [80 h]; COST [15230] | 15,230 |  |
| TAEXTCCL080002 |  | Drawpit and PVC Pipes Installation | 5d | 2027-06-23 | 2027-06-29 | TAEXTCCL080001, TAEXTCCL070002 |  |  |  |  | -20.27d | 0d | ELECTRACIAN [80 h]; EXCAVATOR [40 h]; LABOR [20 h]; EXCAVATOR OPERATOR [40 h]; COST [100235] | 100,235 |  |
| TAEXTCCL080003 |  | Road Crossing Ducts | 2d | 2027-06-29 | 2027-07-01 | TAEXTCCL080002 |  |  |  |  | 11.73d | 0d | DUMP TRUCK [32 h]; EXCAVATOR [16 h]; DUMP TRUCK DRIVER [32 h]; EXCAVATOR OPERATOR [16 h]; COST [8600] | 8,600 |  |
| TAEXTCCL080004 |  | Trench Backfilling | 14d | 2027-07-01 | 2027-07-18 | TAEXTCCL080003 |  |  |  |  | 11.73d | 32d | DUMP TRUCK [60 h]; WATER TANKER [24 h]; EXCAVATOR [30 h]; LABOR [56 h]; DUMP TRUCK DRIVER [60 h]; WATER TANKER DRIVER [24 h]; EXCAVATOR OPERATOR [30 h]; COMPACTOR [23 h]; COST [32150] | 32,150 |  |
|  | 19 | **CCTV Works** |  | 2027-06-01 | 2027-07-25 |  |  |  |  |  |  |  |  |  |  |
| TAEXCCCL080001 |  | Pipe Installation with manhole | 8d | 2027-06-01 | 2027-06-10 | TAEXCCCL070001 |  |  |  |  | -14.55d | 0d | ELECTRACIAN [96 h]; LABOR [192 h]; COST [25094] | 25,094 |  |
| TAEXCCCL080002 |  | CCTV Swiches Lighting panels Installation | 13d | 2027-06-10 | 2027-06-26 | TAEXCCCL080001 |  |  |  |  | 15.45d | 0d | ELECTRACIAN [110 h]; EXCAVATOR [40 h]; LABOR [220 h]; EXCAVATOR OPERATOR [40 h]; COST [2578] | 2,578 |  |
| TAEXCCCL080003 |  | Cable laying and connected with Panels | 10d | 2027-06-26 | 2027-07-07 | TAEXCCCL080002 |  |  |  |  | 15.45d | 0d | ELECTRACIAN [80 h]; LABOR [80 h]; COST [19654] | 19,654 |  |
| TAEXCCCL080004 |  | Pole Installation with IP Outdoor CCTV POE Camera | 15d | 2027-07-07 | 2027-07-25 | TAEXCCCL080003 |  |  |  |  | 15.45d | 31.72d | ELECTRACIAN [120 h]; EXCAVATOR [48 h]; LABOR [96 h]; EXCAVATOR OPERATOR [48 h]; COST [4735] | 4,735 |  |
|  | 3 | **Potable Networks** |  | 2026-08-23 | 2027-05-06 |  |  |  |  |  |  |  |  |  |  |
| TAEXPTCL080001 |  | Excavation works for Trench | 8d | 2026-08-23 A | 2026-11-07 | TAEXPTCL060001 | 75% | 2d | 2026-09-12 | 2026-09-21 | 62.04d | 0d | DUMP TRUCK [120 h]; EXCAVATOR [60 h]; LABOR [30 h]; DUMP TRUCK DRIVER [120 h]; EXCAVATOR OPERATOR [60 h]; COST [51459.6] | 51,459.62 | 38,594.71 |
| TAEXPTCL080003 |  | Install Pipes & Fittings | 8d | 2026-09-26 A | 2027-01-25 | TAEXPTCL080002, TAEXPTCL070003 | 70% | 2.4d | 2027-01-06 | 2027-01-16 | 123.86d | 0d | LABOR [128 h]; PLUMBER [64 h]; COST [78112] | 78,112 | 54,678.4 |
| TAEXPTCL080002 |  | Bedding Works | 2d | 2026-09-26 A | 2026-11-08 | TAEXPTCL080001 | 75% | 0.5d | 2026-10-18 | 2026-10-20 | 168.01d | 10.74d | DUMP TRUCK [16 h]; EXCAVATOR [16 h]; LABOR [32 h]; DUMP TRUCK DRIVER [16 h]; EXCAVATOR OPERATOR [16 h]; COST [22735.9] | 22,735.92 | 17,051.94 |
| TAEXPTCL080006 |  | Install fire hydrent | 6d | 2026-09-27 A | 2027-02-25 | TAEXPTCL080003, TAEXPTCL060006 | 15% | 5.1d | 2027-02-03 | 2027-02-10 | 105.76d | 0d | LABOR [96 h]; PLUMBER [48 h]; COST [24000] | 24,000 | 3,600 |
| TAEXPTCL080007 |  | Valve Chamber works | 16d | 2026-09-27 A | 2027-05-02 | TAEXPTCL080006, TAEXPTCL070007 | 20% | 12.8d | 2027-03-31 | 2027-04-19 | 62.04d | 0d | WATER TANKER [24 h]; EXCAVATOR [24 h]; CONCRET MIXER [32 h]; LABOR [60 h]; WATER TANKER DRIVER [24 h]; EXCAVATOR OPERATOR [24 h]; PLUMBER [48 h]; STEEL FIXER [24 h]; CARPENTER [24 h]; MASON [48 h]; CONCRET MIXER OPERATOR [32 h]; COST [30030] | 30,030 | 6,006 |
| TAEXPTCL080004 |  | Backfilling Works for Trench | 15d | 2027-01-25 | 2027-02-11 | TAEXPTCL080003 |  |  |  |  | 123.86d | 6.13d | DUMP TRUCK [60 h]; WATER TANKER [24 h]; EXCAVATOR [32 h]; LABOR [60 h]; DUMP TRUCK DRIVER [60 h]; WATER TANKER DRIVER [24 h]; EXCAVATOR OPERATOR [32 h]; COMPACTOR [24 h]; COST [28350] | 28,350 |  |
| TAEXPTCL080005 |  | Install Valves with fittings | 4d | 2027-02-14 | 2027-02-18 | TAEXPTCL080004 FF, TAPQDVPT00021, TAEXPTCL060005 |  |  |  |  | 117.73d | 0d | LABOR [64 h]; PLUMBER [64 h]; COST [12500] | 12,500 |  |
| TAEXPTCL080008 |  | Inspection Test | 4d | 2027-05-02 | 2027-05-06 | TAEXPTCL080007 |  |  |  |  | 73.04d | 0d | WATER TANKER [32 h]; LABOR [32 h]; WATER TANKER DRIVER [32 h]; PLUMBER [32 h]; COST [4005] | 4,005 |  |
|  | 4 | **TSE Networks** |  | 2026-08-04 | 2027-05-11 |  |  |  |  |  |  |  |  |  |  |
| TAEXTSCL080001 |  | Excavation works for Trench | 8d | 2026-08-04 A | 2026-11-21 | TAEXTSCL060001 | 60% | 3.2d | 2026-10-04 | 2026-10-12 | 51.42d | 0d | DUMP TRUCK [128 h]; EXCAVATOR [64 h]; LABOR [16 h]; DUMP TRUCK DRIVER [128 h]; EXCAVATOR OPERATOR [64 h]; COST [72903.3] | 72,903.34 | 43,742 |
| TAEXTSCL080005 |  | Install Valves with fittings | 4d | 2026-09-27 A | 2026-12-13 | TAEXTSCL080004 FF | 15% | 3.4d | 2026-11-25 | 2026-11-30 | 184.32d | 0d | LABOR [64 h]; PLUMBER [64 h]; COST [7150] | 7,150 | 1,072.5 |
| TAEXTSCL080006 |  | Valve Chamber works | 16d | 2026-09-27 A | 2026-12-28 | TAEXTSCL080005 | 15% | 13.6d | 2026-11-30 | 2026-12-19 | 184.32d | 111.28d | WATER TANKER [60 h]; EXCAVATOR [60 h]; CONCRET MIXER [60 h]; LABOR [120 h]; WATER TANKER DRIVER [60 h]; EXCAVATOR OPERATOR [60 h]; PLUMBER [120 h]; STEEL FIXER [120 h]; CARPENTER [120 h]; MASON [120 h]; CONCRET MIXER OPERATOR [60 h]; COST [40250] | 40,250 | 6,037.5 |
| TAEXTSCL080002 |  | Bedding Works | 2d | 2026-10-17 A | 2026-11-21 | TAEXTSCL080001, TAEXPTCL080002 | 60% | 0.8d | 2026-11-14 | 2026-11-16 | 157.27d | 0d | DUMP TRUCK [16 h]; EXCAVATOR [16 h]; LABOR [32 h]; DUMP TRUCK DRIVER [16 h]; EXCAVATOR OPERATOR [16 h]; COST [5600] | 5,600 | 3,360 |
| TAEXTSCL080003 |  | Install Pipes & Fittings | 8d | 2026-10-17 A | 2026-11-25 | TAEXTSCL080002, TAEXTSCL0700031 | 60% | 3.2d | 2026-11-21 | 2026-11-30 | 157.27d | 0d | LABOR [128 h]; PLUMBER [128 h]; COST [72300] | 72,300 | 43,380 |
| TAEXTSCL080004 |  | Backfilling Works for Trench | 15d | 2026-11-25 | 2026-12-13 | TAEXTSCL080003 |  |  |  |  | 184.32d | 0d | DUMP TRUCK [56 h]; WATER TANKER [24 h]; EXCAVATOR [32 h]; LABOR [56 h]; DUMP TRUCK DRIVER [56 h]; WATER TANKER DRIVER [24 h]; EXCAVATOR OPERATOR [32 h]; COMPACTOR [24 h]; COST [25300] | 25,300 |  |
| TAEXTSCL080007 |  | Inspection Test | 4d | 2027-05-06 | 2027-05-11 | TAEXTSCL080006, TAEXPTCL080008 |  |  |  |  | 73.04d | 21.62d | WATER TANKER [64 h]; LABOR [64 h]; WATER TANKER DRIVER [64 h]; PLUMBER [64 h]; COST [5420] | 5,420 |  |

| ID | WBS | Activity | Duration | Start | Finish | Predecessors | Complete | Remaining | Planned start | Planned finish | Total float | Free float | Resources | Cost | Actual cost |
| --- | --- | --- | --- | --- | --- | --- | --- | --- | --- | --- | --- | --- | --- | --- | --- |
|  | 16 | **Sewerage Networks** |  | 2026-02-19 | 2026-12-08 |  |  |  |  |  |  |  |  |  |  |
| TAEXSWCL080001 |  | Excavation works for Trench | 8d | 2026-02-19 A | 2026-02-28 A | TAEXSWCL090001 | 100% |  |  |  |  |  | DUMP TRUCK [104 h]; EXCAVATOR [104 h]; LABOR [52 h]; DUMP TRUCK DRIVER [104 h]; EXCAVATOR OPERATOR [104 h]; COST [52416] | 52,416 | 52,416 |
| TAEXSWCL080002 |  | Bedding Works | 2d | 2026-03-31 A | 2026-04-01 A | TAEXSWCL080001 | 100% |  |  |  |  |  | DUMP TRUCK [16 h]; EXCAVATOR [16 h]; LABOR [48 h]; DUMP TRUCK DRIVER [16 h]; EXCAVATOR OPERATOR [16 h]; COST [22987.8] | 22,987.78 | 22,987.78 |
| TAEXSWCL080003 |  | Install GRP Pipes & Fittings | 6d | 2026-04-01 A | 2026-04-07 A | TAEXSWCL080002 | 100% |  |  |  |  |  | EXCAVATOR [80 h]; LABOR [160 h]; EXCAVATOR OPERATOR [80 h]; PLUMBER [80 h]; COST [38962.5] | 38,962.5 | 38,962.5 |
| TAEXSWCL080004 |  | Backfilling Works for Trench | 6d | 2026-04-04 A | 2026-04-09 A | TAEXSWCL080003 | 100% |  |  |  |  |  | DUMP TRUCK [60 h]; WATER TANKER [20 h]; EXCAVATOR [30 h]; LABOR [60 h]; DUMP TRUCK DRIVER [60 h]; WATER TANKER DRIVER [20 h]; EXCAVATOR OPERATOR [30 h]; COMPACTOR [30 h]; COST [9024] | 9,024 | 9,024 |
| TAEXSWCL080005 |  | Manhole Installation with backfilling | 5d | 2026-04-11 A | 2026-04-15 A | TAEXSWCL080003 | 100% |  |  |  |  |  | DUMP TRUCK [56 h]; EXCAVATOR [32 h]; LABOR [56 h]; DUMP TRUCK DRIVER [56 h]; EXCAVATOR OPERATOR [32 h]; PLUMBER [32 h]; MASON [32 h]; COST [22704] | 22,704 | 22,704 |
| TAEXSWCL0800041 |  | Backfilling Works for Trench Part 01 | 10d | 2026-06-06 A | 2026-10-04 A | TAEXSWCL0800031 FF+15d, TAEXSWCL080004 | 100% |  | 2026-12-29 | 2027-01-10 |  |  | DUMP TRUCK [60 h]; WATER TANKER [20 h]; EXCAVATOR [30 h]; LABOR [60 h]; DUMP TRUCK DRIVER [60 h]; WATER TANKER DRIVER [20 h]; EXCAVATOR OPERATOR [30 h]; COMPACTOR [30 h]; COST [13536] | 13,536 | 13,536 |
| TAEXSWCL0800011 |  | Excavation works for Trench Part 01 | 10d | 2026-06-08 A | 2026-06-21 A | TAEXSWCL080001, TAEXSWCL070001 | 100% |  | 2026-12-06 | 2026-12-17 |  |  | DUMP TRUCK [104 h]; EXCAVATOR [104 h]; LABOR [52 h]; DUMP TRUCK DRIVER [104 h]; EXCAVATOR OPERATOR [104 h]; COST [2184] | 2,184 | 2,184 |
| TAEXSWCL0800021 |  | Bedding Works Part 01 | 1d | 2026-07-02 A | 2026-09-06 A | TAEXSWCL0800011 | 100% |  | 2026-10-13 | 2026-10-14 |  |  | DUMP TRUCK [16 h]; EXCAVATOR [16 h]; LABOR [48 h]; DUMP TRUCK DRIVER [16 h]; EXCAVATOR OPERATOR [16 h]; COST [4056.67] | 4,056.67 | 4,056.67 |
| TAEXSWCL0800031 |  | Install GRP Pipes & Fittings Part 01 | 4d | 2026-07-02 A | 2026-09-13 A | TAEXSWCL080003, TAEXSWCL0800021 | 100% |  | 2026-10-14 | 2026-10-19 |  |  | EXCAVATOR [80 h]; LABOR [160 h]; EXCAVATOR OPERATOR [80 h]; PLUMBER [80 h]; COST [12987.5] | 12,987.5 | 12,987.5 |
| TAEXSWCL080006 |  | Leakage Test | 3d | 2026-07-18 A | 2026-12-08 | TAEXSWCL0800051 | 70% | 0.9d | 2026-10-03 | 2026-10-06 | 200.95d | 78.24d | WATER TANKER [24 h]; LABOR [48 h]; WATER TANKER DRIVER [24 h]; PLUMBER [24 h]; COST [23436.2] | 23,436.15 | 16,405.31 |
| TAEXSWCL0800051 |  | Manhole Installation with backfilling Part 01 | 10d | 2026-07-28 A | 2026-12-07 | TAEXSWCL0800041 FF+10d, TAEXSWCL080005, TAPQDVSW00021 | 95% | 0.5d | 2026-09-14 | 2026-09-26 | 200.95d | 0d | DUMP TRUCK [56 h]; EXCAVATOR [32 h]; LABOR [56 h]; DUMP TRUCK DRIVER [56 h]; EXCAVATOR OPERATOR [32 h]; PLUMBER [32 h]; MASON [32 h]; COST [52976] | 52,976 | 50,327.2 |
|  | 5 | **Storm Networks** |  | 2026-02-15 | 2027-01-25 |  |  |  |  |  |  |  |  |  |  |
| TAEXSTCL080001 |  | Excavation works for Trench | 10d | 2026-02-15 A | 2026-02-25 A | TAEXSTCL070001 | 100% |  |  |  |  |  | DUMP TRUCK [104 h]; EXCAVATOR [104 h]; LABOR [52 h]; DUMP TRUCK DRIVER [104 h]; EXCAVATOR OPERATOR [104 h]; COST [188709] | 188,708.8 | 188,708.8 |
| TAEXSTCL080002 |  | Bedding Works | 2d | 2026-03-05 A | 2026-03-07 A | TAEXSTCL080001 | 100% |  |  |  |  |  | DUMP TRUCK [16 h]; EXCAVATOR [16 h]; LABOR [48 h]; DUMP TRUCK DRIVER [16 h]; EXCAVATOR OPERATOR [16 h]; COST [82266.4] | 82,266.37 | 82,266.37 |
| TAEXSTCL080003 |  | Install GRP Pipes & Fittings | 7d | 2026-04-01 A | 2026-04-08 A | TAEXSTCL080002 | 100% |  |  |  |  |  | EXCAVATOR [80 h]; LABOR [80 h]; EXCAVATOR OPERATOR [80 h]; PLUMBER [160 h]; COST [192525] | 192,525.1 | 192,525.1 |
| TAEXSTCL080004 |  | Backfilling Works for Trench | 6d | 2026-04-04 A | 2026-04-09 A | TAEXSTCL080003 | 100% |  |  |  |  |  | DUMP TRUCK [120 h]; WATER TANKER [30 h]; EXCAVATOR [60 h]; LABOR [120 h]; DUMP TRUCK DRIVER [120 h]; WATER TANKER DRIVER [30 h]; EXCAVATOR OPERATOR [60 h]; COMPACTOR [30 h]; COST [91029] | 91,029 | 91,029 |
| TAEXSTCL080005 |  | Manhole Installation with backfilling | 5d | 2026-04-11 A | 2026-04-15 A | TAEXSTCL080003 | 100% |  |  |  |  |  | DUMP TRUCK [110 h]; EXCAVATOR [112 h]; LABOR [224 h]; DUMP TRUCK DRIVER [110 h]; EXCAVATOR OPERATOR [112 h]; PLUMBER [112 h]; MASON [112 h]; COST [31560] | 31,560 | 31,560 |
| TAEXSTCL0800051 |  | Manhole Installation with backfilling Part 01 | 10d | 2026-06-06 A | 2026-12-14 | TAEXSTCL0800041 FF+10d, TAEXSTCL080005, TAPQDVST00061 | 85% | 1.5d | 2026-11-07 | 2026-11-18 | 7d | 0d | DUMP TRUCK [110 h]; EXCAVATOR [112 h]; LABOR [224 h]; DUMP TRUCK DRIVER [110 h]; EXCAVATOR OPERATOR [112 h]; PLUMBER [112 h]; MASON [112 h]; COST [73640] | 73,640 | 62,594 |
| TAEXSTCL080007 |  | Leakage Test | 3d | 2026-07-12 A | 2027-01-25 | TAEXSTCL080006 FS+25d, TAEXSTCL0800051 | 70% | 0.9d | 2026-12-27 | 2026-12-29 | 85d | 50.1d | WATER TANKER [24 h]; LABOR [24 h]; WATER TANKER DRIVER [24 h]; PLUMBER [24 h]; COST [11200] | 11,200 | 7,840 |
| TAEXSTCL0800011 |  | Excavation works for Trench Part 01 | 5d | 2026-09-12 A | 2026-10-10 A | TAEXSTCL0700011, TAEXSTCL100001 | 100% |  | 2026-09-24 | 2026-09-30 |  |  | DUMP TRUCK [104 h]; EXCAVATOR [104 h]; LABOR [52 h]; DUMP TRUCK DRIVER [104 h]; EXCAVATOR OPERATOR [104 h]; COST [3851.2] | 3,851.2 | 3,851.2 |
| TAEXSTCL0800021 |  | Bedding Works Part 01 | 1d | 2026-09-12 A | 2026-10-17 A | TAEXSTCL080002, TAEXSTCL0800011 | 100% |  | 2026-09-30 | 2026-10-01 |  |  | DUMP TRUCK [16 h]; EXCAVATOR [16 h]; LABOR [48 h]; DUMP TRUCK DRIVER [16 h]; EXCAVATOR OPERATOR [16 h]; COST [1678.91] | 1,678.91 | 1,678.91 |
| TAEXSTCL0800031 |  | Install GRP Pipes & Fittings Part 01 | 7d | 2026-10-17 A | 2026-10-29 | TAEXSTCL080003, TAEXSTCL0800021 | 90% | 0.7d | 2026-10-27 | 2026-11-04 | 20.33d | 0d | EXCAVATOR [80 h]; LABOR [80 h]; EXCAVATOR OPERATOR [80 h]; PLUMBER [160 h]; COST [10132.9] | 10,132.9 | 9,119.61 |
| TAEXSTCL0800041 |  | Backfilling Works for Trench Part 01 | 7d | 2026-10-17 A | 2026-11-16 | TAEXSTCL0800031 FF+15d, TAEXSTCL080004 | 90% | 0.7d | 2026-11-14 | 2026-11-22 | 20.33d | 13.33d | DUMP TRUCK [120 h]; WATER TANKER [30 h]; EXCAVATOR [60 h]; LABOR [120 h]; DUMP TRUCK DRIVER [120 h]; WATER TANKER DRIVER [30 h]; EXCAVATOR OPERATOR [60 h]; COMPACTOR [30 h]; COST [4791] | 4,791 | 4,311.9 |
| TAEXSTCL080006 |  | Install Catch Basin with UPVC Pipes & Fittings | 11d | 2026-12-14 | 2026-12-27 | TAEXSTCL040006, TAEXSTCL0800051 |  |  |  |  | 7d | 0d | EXCAVATOR [44 h]; LABOR [88 h]; EXCAVATOR OPERATOR [44 h]; PLUMBER [88 h]; COST [91250] | 91,250 |  |

| ID | WBS | Activity | Duration | Start | Finish | Predecessors | Complete | Total float | Free float | Resources | Cost | Actual cost |
| --- | --- | --- | --- | --- | --- | --- | --- | --- | --- | --- | --- | --- |
|  | 3 | **Local Road 09** |  | 2025-10-20 | 2027-08-28 |  |  |  |  |  |  |  |
|  | 12 | **Road Works** |  | 2025-10-20 | 2027-07-31 |  |  |  |  |  |  |  |
| TAEXRDCL090001 |  | Road Excavation and Disposal | 25d | 2025-10-20 A | 2025-11-17 A | TAEXRDCL030001 | 100% |  |  | DUMP TRUCK [56 h]; EXCAVATOR [28 h]; LABOR [56 h]; DUMP TRUCK DRIVER [56 h]; EXCAVATOR OPERATOR [28 h]; COST [281473] | 281,473 | 281,473 |
| TAEXRDCL090002 |  | Backfilling Works for Road | 2d | 2025-12-15 A | 2025-12-16 A | TAEXRDCL090001 | 100% |  |  | ROLEER [104 h]; DUMP TRUCK [104 h]; WATER TANKER [30 h]; EXCAVATOR [60 h]; GRADER [104 h]; LABOR [104 h]; GRADER OPERATOR [104 h]; DUMP TRUCK DRIVER [104 h]; WATER TANKER DRIVER [30 h]; EXCAVATOR OPERATOR [60 h]; ROLLER OPERATOR [104 h]; COST [140932] | 140,932 | 140,932 |
| TAEXRDCL090003 |  | Subgrade Works | 15d | 2026-01-04 A | 2026-01-20 A | TAEXRDCL090002 | 100% |  |  | ROLEER [40 h]; DUMP TRUCK [80 h]; WATER TANKER [20 h]; EXCAVATOR [40 h]; GRADER [40 h]; LABOR [40 h]; GRADER OPERATOR [40 h]; DUMP TRUCK DRIVER [80 h]; WATER TANKER DRIVER [20 h]; EXCAVATOR OPERATOR [40 h]; ROLLER OPERATOR [40 h]; COST [95648.2] | 95,648.16 | 95,648.16 |
| TAEXRDCL090004 |  | ABC aggregate Base Course Works | 5d | 2027-03-04 | 2027-03-10 | TAEXRDCL090003, TAEXSTCL090007 FS+45d, TAPQDVRD00011 |  | 52.95d | 0d | ROLEER [64 h]; DUMP TRUCK [240 h]; WATER TANKER [64 h]; EXCAVATOR [64 h]; GRADER [64 h]; LABOR [64 h]; GRADER OPERATOR [64 h]; DUMP TRUCK DRIVER [240 h]; WATER TANKER DRIVER [64 h]; EXCAVATOR OPERATOR [64 h]; ROLLER OPERATOR [64 h]; COST [222366] | 222,366 |  |
| TAEXRDCL090005 |  | MBC1 layer | 1d | 2027-03-10 | 2027-03-11 | TAEXRDCL090004 |  | 52.95d | 0d | MC1 sprinker [8 h]; MC DRIVER [8 h]; COST [2458] | 2,458 |  |
| TAEXRDCL090006 |  | BBC Base Course | 2d | 2027-03-11 | 2027-03-14 | TAEXRDCL090005 |  | 52.95d | 51.11d | ROLEER [48 h]; DUMP TRUCK [72 h]; MILLING MACHINE [24 h]; WHEEL ROLLER [48 h]; LABOR [100 h]; DUMP TRUCK DRIVER [72 h]; MILLING MACHINE OPERATOR [24 h]; WHEEL ROLLER OPERATOR [48 h]; ROLLER OPERATOR [48 h]; COST [404278] | 404,278 |  |
| TAEXRDCL090008 |  | Precast Concret Kerps | 13d | 2027-06-26 | 2027-07-11 | TAEXRDCL090006, TAEXRDCL080008 |  | 2.5d | 0d | LABOR [510 h]; COST [271311] | 271,311 |  |
| TAEXRDCL090007 |  | BWC Asphalt Wearing Course with RC | 1d | 2027-07-11 | 2027-07-12 | TAEXRDCL090006, TAEXRDCL090008 |  | 2.5d | 0d | ROLEER [16 h]; DUMP TRUCK [32 h]; MILLING MACHINE [8 h]; WHEEL ROLLER [16 h]; LABOR [40 h]; DUMP TRUCK DRIVER [32 h]; MILLING MACHINE OPERATOR [8 h]; WHEEL ROLLER OPERATOR [16 h]; ROLLER OPERATOR [16 h]; COST [111511] | 111,511 |  |
| TAEXRDCL090009 |  | Precast Interlock Works | 12d | 2027-07-12 | 2027-07-26 | TAEXRDCL090008, TAEXRDCL090007 |  | 2.5d | 0d | LABOR [260 h]; COST [449144] | 449,144 |  |
| TAEXRDCL090010 |  | Stone Paving works | 2d | 2027-07-26 | 2027-07-28 | TAEXRDCL090009 |  | 2.5d | 0d | DUMP TRUCK [32 h]; LABOR [48 h]; DUMP TRUCK DRIVER [32 h]; COST [21000] | 21,000 |  |
| TAEXRDCL090011 |  | Road Marking | 1d | 2027-07-28 | 2027-07-29 | TAEXRDCL090010 |  | 2.5d | 0d | LABOR [32 h]; COST [4100] | 4,100 |  |
| TAEXRDCL090012 |  | Traffic Sinage | 1d | 2027-07-29 | 2027-07-31 | TAEXRDCL090011 |  | 2.5d | 0.66d | EXCAVATOR [8 h]; LABOR [32 h]; EXCAVATOR OPERATOR [8 h]; COST [33450] | 33,450 |  |
|  | 1 | **Electrical Works** |  | 2027-06-24 | 2027-08-28 |  |  |  |  |  |  |  |
| TAEXELCL090001 |  | Trench Cut off | 11d | 2027-06-24 | 2027-07-07 | TAEXELCL080001 |  | -29.3d | 0d | DUMP TRUCK [160 h]; EXCAVATOR [88 h]; LABOR [44 h]; DUMP TRUCK DRIVER [160 h]; EXCAVATOR OPERATOR [88 h]; COST [30186.2] | 30,186.25 |  |
| TAEXELCL090002 |  | Drawpit and PVC Pipes Installation | 9d | 2027-07-07 | 2027-07-18 | TAEXELCL090001, TAPQDVEL0005 |  | -4.15d | 0d | ELECTRACIAN [80 h]; EXCAVATOR [40 h]; LABOR [80 h]; EXCAVATOR OPERATOR [40 h]; COST [4560] | 4,560 |  |
| TAEXELCL090003 |  | Road Crossing Ducts | 2d | 2027-07-18 | 2027-07-20 | TAEXELCL090002 |  | -4.15d | 0d | DUMP TRUCK [40 h]; EXCAVATOR [40 h]; DUMP TRUCK DRIVER [40 h]; EXCAVATOR OPERATOR [40 h]; COST [260] | 260 |  |
| TAEXELCL090006 |  | Poles RC Foundation | 3d | 2027-07-18 | 2027-07-21 | TAEXELCL090002, TAPQDVEL0005 |  | 5.85d | 0d | EXCAVATOR [40 h]; LABOR [40 h]; EXCAVATOR OPERATOR [40 h]; COST [9510] | 9,510 |  |
| TAEXELCL090004 |  | Trench Backfilling | 10d | 2027-07-20 | 2027-08-01 | TAEXELCL090003 |  | -4.15d | 0d | DUMP TRUCK [160 h]; WATER TANKER [144 h]; EXCAVATOR [160 h]; LABOR [160 h]; DUMP TRUCK DRIVER [160 h]; WATER TANKER DRIVER [144 h]; EXCAVATOR OPERATOR [160 h]; COMPACTOR [144 h]; COST [10530] | 10,530 |  |
| TAEXELCL090008 |  | Lighting Pole Installation with Luminares | 4d | 2027-07-21 | 2027-07-26 | TAEXELCL090006 |  | 5.85d | 35.15d | ELECTRACIAN [40 h]; CRANE [40 h]; CRANE OPERATOR [40 h]; COST [91500] | 91,500 |  |
| TAEXELCL090005 |  | Cables Pulling | 2d | 2027-08-01 | 2027-08-03 | TAEXELCL090002, TAEXELCL090003, TAEXELCL090004, TAEXELCL090004 FF |  | -4.15d | 19d | ELECTRACIAN [120 h]; LABOR [160 h]; COST [116000] | 116,000 |  |
| TAEXELCL090007 |  | Earthing cables | 2d | 2027-08-25 | 2027-08-28 | TAEXELCL090006, TAEXELCL090005, TAEXELCL090005 FF, TAEXELCL080007 |  | -23.15d | 3.13d | ELECTRACIAN [80 h]; LABOR [40 h]; COST [2320] | 2,320 |  |
|  | 2 | **Telecommunication Works** |  | 2027-06-20 | 2027-07-18 |  |  |  |  |  |  |  |
| TAEXTCCL090001 |  | Trench Cut off | 5d | 2027-06-20 | 2027-06-26 | TAEXTCCL080001 |  | -17.61d | 0d | DUMP TRUCK [80 h]; EXCAVATOR [40 h]; LABOR [20 h]; DUMP TRUCK DRIVER [80 h]; EXCAVATOR OPERATOR [40 h]; COST [7500] | 7,500 |  |
| TAEXTCCL090002 |  | Drawpit and PVC Pipes Installation | 4d | 2027-06-29 | 2027-07-04 | TAEXTCCL090001, TAEXTCCL080002 |  | -20.27d | 0d | ELECTRACIAN [80 h]; EXCAVATOR [32 h]; LABOR [16 h]; EXCAVATOR OPERATOR [32 h]; COST [80250] | 80,250 |  |
| TAEXTCCL090003 |  | Road Crossing Ducts | 2d | 2027-07-04 | 2027-07-06 | TAEXTCCL090002 |  | 11.73d | 0d | DUMP TRUCK [32 h]; EXCAVATOR [16 h]; DUMP TRUCK DRIVER [32 h]; EXCAVATOR OPERATOR [16 h]; COST [8600] | 8,600 |  |
| TAEXTCCL090004 |  | Trench Backfilling | 10d | 2027-07-06 | 2027-07-18 | TAEXTCCL090003 |  | 11.73d | 32d | DUMP TRUCK [140 h]; WATER TANKER [80 h]; EXCAVATOR [80 h]; LABOR [160 h]; DUMP TRUCK DRIVER [140 h]; WATER TANKER DRIVER [80 h]; EXCAVATOR OPERATOR [80 h]; COMPACTOR [80 h]; COST [26430] | 26,430 |  |

| ID | WBS | Activity | Duration | Start | Finish | Predecessors | Complete | Remaining | Planned start | Planned finish | Total float | Free float | Resources | Cost | Actual cost |
| --- | --- | --- | --- | --- | --- | --- | --- | --- | --- | --- | --- | --- | --- | --- | --- |
|  | 20 | **CCTV Works** |  | 2027-06-10 | 2027-07-24 |  |  |  |  |  |  |  |  |  |  |
| TAEXCCCL090001 |  | Pipe Installation with manhole | 7d | 2027-06-10 | 2027-06-19 | TAEXCCCL080001 |  |  |  |  | -14.55d | 0d | ELECTRACIAN [96 h]; LABOR [192 h]; COST [23144] | 23,144 |  |
| TAEXCCCL090002 |  | CCTV Swiches Lighting panels Installation | 10d | 2027-06-19 | 2027-06-30 | TAEXCCCL090001 |  |  |  |  | 16.45d | 0d | ELECTRACIAN [160 h]; EXCAVATOR [40 h]; LABOR [80 h]; EXCAVATOR OPERATOR [40 h]; COST [2515] | 2,515 |  |
| TAEXCCCL090003 |  | Cable laying and connected with Panels | 8d | 2027-06-30 | 2027-07-10 | TAEXCCCL090002 |  |  |  |  | 16.45d | 0d | ELECTRACIAN [128 h]; LABOR [128 h]; COST [22767] | 22,767 |  |
| TAEXCCCL090004 |  | Pole Installation with IP Outdoor CCTV POE Camera | 12d | 2027-07-10 | 2027-07-24 | TAEXCCCL090003 |  |  |  |  | 16.45d | 32.72d | ELECTRACIAN [96 h]; EXCAVATOR [48 h]; LABOR [96 h]; EXCAVATOR OPERATOR [48 h]; COST [3899] | 3,899 |  |
|  | 3 | **Potable Networks** |  | 2026-03-23 | 2027-05-22 |  |  |  |  |  |  |  |  |  |  |
| TAEXPTCL090001 |  | Excavation works for Trench | 4d | 2026-03-23 A | 2026-03-26 A | TAEXPTCL010001 | 100% |  |  |  |  |  | DUMP TRUCK [80 h]; EXCAVATOR [40 h]; LABOR [20 h]; DUMP TRUCK DRIVER [80 h]; EXCAVATOR OPERATOR [40 h]; COST [61806.6] | 61,806.64 | 61,806.64 |
| TAEXPTCL090002 |  | Bedding Works | 1d | 2026-04-14 A | 2026-04-14 A | TAEXPTCL090001 | 100% |  |  |  |  |  | DUMP TRUCK [16 h]; EXCAVATOR [16 h]; LABOR [32 h]; DUMP TRUCK DRIVER [16 h]; EXCAVATOR OPERATOR [16 h]; COST [19325.5] | 19,325.53 | 19,325.53 |
| TAEXPTCL090003 |  | Install Pipes & Fittings | 2d | 2026-04-16 A | 2026-04-18 A | TAEXPTCL090002 | 100% |  |  |  |  |  | LABOR [96 h]; PLUMBER [48 h]; COST [65025] | 65,025 | 65,025 |
| TAEXPTCL090004 |  | Backfilling Works for Trench | 9d | 2026-04-21 A | 2026-04-30 A | TAEXPTCL090003 | 100% |  |  |  |  |  | DUMP TRUCK [96 h]; WATER TANKER [24 h]; EXCAVATOR [48 h]; LABOR [40 h]; DUMP TRUCK DRIVER [96 h]; WATER TANKER DRIVER [24 h]; EXCAVATOR OPERATOR [48 h]; COMPACTOR [24 h]; COST [18708.5] | 18,708.5 | 18,708.5 |
| TAEXPTCL0900021 |  | Bedding Works Part 01 | 6d | 2026-06-06 A | 2026-08-09 A | TAEXPTCL0900011 | 100% |  | 2026-08-23 | 2026-08-30 |  |  | DUMP TRUCK [16 h]; EXCAVATOR [16 h]; LABOR [32 h]; DUMP TRUCK DRIVER [16 h]; EXCAVATOR OPERATOR [16 h]; COST [3410.39] | 3,410.39 | 3,410.39 |
| TAEXPTCL0900031 |  | Install Pipes & Fittings Part 01 | 6d | 2026-06-11 A | 2026-08-09 A | TAEXPTCL0900021 | 100% |  | 2026-08-29 | 2026-09-05 |  |  | LABOR [96 h]; PLUMBER [48 h]; COST [11475] | 11,475 | 11,475 |
| TAEXPTCL0900041 |  | Backfilling Works for Trench Part 01 | 10d | 2026-06-15 A | 2026-08-09 A | TAEXPTCL090004, TAEXPTCL0900031, TAEXTSCL090004 | 100% |  | 2027-01-12 | 2027-01-24 |  |  | DUMP TRUCK [96 h]; WATER TANKER [24 h]; EXCAVATOR [48 h]; LABOR [40 h]; DUMP TRUCK DRIVER [96 h]; WATER TANKER DRIVER [24 h]; EXCAVATOR OPERATOR [48 h]; COMPACTOR [24 h]; COST [3301.5] | 3,301.5 | 3,301.5 |
| TAEXPTCL0900011 |  | Excavation works for Trench Part 01 | 3d | 2026-08-06 A | 2026-08-09 A | TAEXPTCL090001, TAEXPTCL0100011 | 100% |  | 2026-08-13 | 2026-08-17 |  |  | DUMP TRUCK [80 h]; EXCAVATOR [40 h]; LABOR [20 h]; DUMP TRUCK DRIVER [80 h]; EXCAVATOR OPERATOR [40 h]; COST [3252.98] | 3,252.98 | 3,252.98 |
| TAEXPTCL090005 |  | Install Valves with fittings | 3d | 2026-10-04 A | 2027-02-02 | TAEXPTCL0900041, TAPQDVPT00021, TAEXPTCL070005 | 25% | 2.25d | 2027-01-21 | 2027-01-25 | 117.73d | 0d | LABOR [48 h]; PLUMBER [48 h]; COST [12500] | 12,500 | 3,125 |
| TAEXPTCL090006 |  | Install fire hydrent | 6d | 2027-01-28 | 2027-02-04 | TAEXPTCL0900031, TAEXPTCL070006 |  |  |  |  | 84.06d | 0d | LABOR [96 h]; PLUMBER [48 h]; COST [24000] | 24,000 |  |
| TAEXPTCL090007 |  | Valve Chamber works | 14d | 2027-05-02 | 2027-05-18 | TAEXPTCL090006, TAEXPTCL080007 |  |  |  |  | 62.04d | 0d | WATER TANKER [60 h]; EXCAVATOR [60 h]; CONCRET MIXER [55 h]; LABOR [120 h]; WATER TANKER DRIVER [60 h]; EXCAVATOR OPERATOR [60 h]; PLUMBER [120 h]; STEEL FIXER [120 h]; CARPENTER [120 h]; MASON [120 h]; CONCRET MIXER OPERATOR [55 h]; COST [20050] | 20,050 |  |
| TAEXPTCL090008 |  | Inspection Test | 3d | 2027-05-18 | 2027-05-22 | TAEXPTCL090007 |  |  |  |  | 64.04d | 2d | WATER TANKER [24 h]; LABOR [32 h]; WATER TANKER DRIVER [24 h]; PLUMBER [24 h]; COST [3250] | 3,250 |  |
|  | 4 | **TSE Networks** |  | 2026-04-26 | 2027-05-29 |  |  |  |  |  |  |  |  |  |  |
| TAEXTSCL090001 |  | Excavation works for Trench | 4d | 2026-04-26 A | 2026-04-29 A | TAEXTSCL010001 | 100% |  |  |  |  |  | DUMP TRUCK [80 h]; EXCAVATOR [40 h]; LABOR [20 h]; DUMP TRUCK DRIVER [80 h]; EXCAVATOR OPERATOR [40 h]; COST [51303] | 51,303 | 51,303 |
| TAEXTSCL090005 |  | Install Valves with fittings | 3d | 2026-10-04 A | 2027-05-09 | TAEXTSCL090004 FF, TAEXTSCL060005 | 50% | 1.5d | 2027-04-24 | 2027-04-27 | 55.54d | 0d | LABOR [48 h]; PLUMBER [48 h]; COST [5200] | 5,200 | 2,600 |
| TAEXTSCL0900011 |  | Excavation works for Trench Part 01 | 12d | 2026-10-27 | 2026-11-10 | TAEXTSCL090001, TAEXTSCL0700011 |  |  |  |  | 8.34d | 0d | DUMP TRUCK [80 h]; EXCAVATOR [40 h]; LABOR [20 h]; DUMP TRUCK DRIVER [80 h]; EXCAVATOR OPERATOR [40 h]; COST [5700.34] | 5,700.34 |  |
| TAEXTSCL090002 |  | Bedding Works | 2d | 2026-11-10 | 2026-11-12 | TAEXTSCL0900011 |  |  |  |  | 43.84d | 0d | DUMP TRUCK [16 h]; EXCAVATOR [16 h]; LABOR [32 h]; DUMP TRUCK DRIVER [16 h]; EXCAVATOR OPERATOR [16 h]; COST [5600] | 5,600 |  |
| TAEXTSCL090003 |  | Install Pipes & Fittings | 6d | 2026-11-25 | 2026-12-02 | TAEXTSCL090002, TAEXTSCL080003, TAEXPTCL0900031 |  |  |  |  | 157.27d | 0d | LABOR [96 h]; PLUMBER [96 h]; COST [54580] | 54,580 |  |
| TAEXTSCL090004 |  | Backfilling Works for Trench | 12d | 2026-12-02 | 2026-12-16 | TAEXTSCL090003 |  |  |  |  | 157.27d | 0d | DUMP TRUCK [200 h]; WATER TANKER [96 h]; EXCAVATOR [96 h]; LABOR [100 h]; DUMP TRUCK DRIVER [200 h]; WATER TANKER DRIVER [96 h]; EXCAVATOR OPERATOR [96 h]; COMPACTOR [128 h]; COST [20100] | 20,100 |  |
| TAEXTSCL090006 |  | Valve Chamber works | 14d | 2027-05-09 | 2027-05-25 | TAEXTSCL090005 |  |  |  |  | 58.69d | 0d | WATER TANKER [60 h]; EXCAVATOR [60 h]; CONCRET MIXER [60 h]; LABOR [120 h]; WATER TANKER DRIVER [60 h]; EXCAVATOR OPERATOR [60 h]; PLUMBER [120 h]; STEEL FIXER [120 h]; CARPENTER [120 h]; MASON [120 h]; CONCRET MIXER OPERATOR [60 h]; COST [36000] | 36,000 |  |
| TAEXTSCL090007 |  | Inspection Test | 3d | 2027-05-25 | 2027-05-29 | TAEXTSCL090006 |  |  |  |  | 58.69d | 7.27d | WATER TANKER [24 h]; LABOR [64 h]; WATER TANKER DRIVER [24 h]; PLUMBER [64 h]; COST [3650] | 3,650 |  |

| ID | WBS | Activity | Duration | Start | Finish | Predecessors | Complete | Remaining | Planned start | Planned finish | Total float | Free float | Resources | Cost | Actual cost |
| --- | --- | --- | --- | --- | --- | --- | --- | --- | --- | --- | --- | --- | --- | --- | --- |
|  | 17 | **Sewerage Networks** |  | 2026-02-08 | 2026-12-10 |  |  |  |  |  |  |  |  |  |  |
| TAEXSWCL090001 |  | Excavation works for Trench | 43d | 2026-02-08 A | 2026-03-29 A | TAEXSWCL050001 | 100% |  |  |  |  |  | DUMP TRUCK [112 h]; EXCAVATOR [64 h]; LABOR [32 h]; DUMP TRUCK DRIVER [112 h]; EXCAVATOR OPERATOR [64 h]; COST [40058] | 40,058 | 40,058 |
| TAEXSWCL090002 |  | Bedding Works | 4d | 2026-03-29 A | 2026-04-01 A | TAEXSWCL090001 | 100% |  |  |  |  |  | DUMP TRUCK [16 h]; EXCAVATOR [8 h]; LABOR [16 h]; DUMP TRUCK DRIVER [16 h]; EXCAVATOR OPERATOR [8 h]; COST [24294.5] | 24,294.45 | 24,294.45 |
| TAEXSWCL090003 |  | Install GRP Pipes & Fittings | 21d | 2026-04-01 A | 2026-04-25 A | TAEXSWCL090002 | 100% |  |  |  |  |  | EXCAVATOR [64 h]; LABOR [112 h]; EXCAVATOR OPERATOR [64 h]; PLUMBER [64 h]; COST [95755] | 95,755 | 95,755 |
| TAEXSWCL090004 |  | Backfilling Works for Trench | 10d | 2026-04-05 A | 2026-04-15 A | TAEXSWCL090003 FF+15d | 100% |  |  |  |  |  | DUMP TRUCK [208 h]; WATER TANKER [104 h]; EXCAVATOR [104 h]; LABOR [104 h]; DUMP TRUCK DRIVER [208 h]; WATER TANKER DRIVER [104 h]; EXCAVATOR OPERATOR [104 h]; COMPACTOR [104 h]; COST [17717.5] | 17,717.5 | 17,717.5 |
| TAEXSWCL090005 |  | Manhole Installation with backfilling | 6d | 2026-04-11 A | 2026-04-17 A | TAEXSWCL090003 | 100% |  | 2026-04-11 | 2026-04-16 |  |  | DUMP TRUCK [96 h]; EXCAVATOR [96 h]; LABOR [192 h]; DUMP TRUCK DRIVER [96 h]; EXCAVATOR OPERATOR [96 h]; PLUMBER [96 h]; MASON [32 h]; COST [31251.5] | 31,251.5 | 31,251.5 |
| TAEXSWCL090006 |  | Leakage Test | 3d | 2026-07-18 A | 2026-10-17 A | TAEXSWCL0900051 | 100% |  | 2026-11-02 | 2026-11-05 |  |  | WATER TANKER [24 h]; LABOR [48 h]; WATER TANKER DRIVER [24 h]; PLUMBER [24 h]; COST [22236.2] | 22,236.15 | 22,236.15 |
| TAEXSWCL0900051 |  | Manhole Installation with backfilling Part 01 | 6d | 2026-10-10 A | 2026-12-10 | TAEXSWCL0900041 FF, TAEXSWCL090005, TAPQDVSW00021 | 40% | 3.6d | 2026-11-29 | 2026-12-06 | 198.75d | 0d | DUMP TRUCK [96 h]; EXCAVATOR [96 h]; LABOR [192 h]; DUMP TRUCK DRIVER [96 h]; EXCAVATOR OPERATOR [96 h]; PLUMBER [96 h]; MASON [32 h]; COST [31251.5] | 31,251.5 | 12,500.6 |
| TAEXSWCL0900041 |  | Backfilling Works for Trench Part 01 | 8d | 2026-10-19 | 2026-10-27 | TAEXSWCL090004, TAEXSWCL0500041 |  |  |  |  | 236d | 37.25d | DUMP TRUCK [208 h]; WATER TANKER [104 h]; EXCAVATOR [104 h]; LABOR [104 h]; DUMP TRUCK DRIVER [208 h]; WATER TANKER DRIVER [104 h]; EXCAVATOR OPERATOR [104 h]; COMPACTOR [104 h]; COST [932.5] | 932.5 |  |
|  | 5 | **Storm Networks** |  | 2026-02-10 | 2027-01-11 |  |  |  |  |  |  |  |  |  |  |
| TAEXSTCL090001 |  | Excavation works for Trench | 89d | 2026-02-10 A | 2026-05-24 A | TAEXSTCL080001 | 100% |  |  |  |  |  | DUMP TRUCK [112 h]; EXCAVATOR [64 h]; LABOR [32 h]; DUMP TRUCK DRIVER [112 h]; EXCAVATOR OPERATOR [64 h]; COST [182520] | 182,520 | 182,520 |
| TAEXSTCL090002 |  | Bedding Works | 1d | 2026-05-07 A | 2026-05-07 A | TAEXSTCL090001 | 100% |  |  |  |  |  | DUMP TRUCK [8 h]; EXCAVATOR [8 h]; LABOR [16 h]; DUMP TRUCK DRIVER [8 h]; EXCAVATOR OPERATOR [8 h]; COST [73335.5] | 73,335.52 | 73,335.52 |
| TAEXSTCL0900021 |  | Bedding Works Part 01 | 1d | 2026-06-04 A | 2026-06-06 A | TAEXSTCL090002, TAEXSTCL0800021, TAEXTSCL090002 | 100% |  | 2026-09-17 | 2026-09-17 |  |  | DUMP TRUCK [8 h]; EXCAVATOR [8 h]; LABOR [16 h]; DUMP TRUCK DRIVER [8 h]; EXCAVATOR OPERATOR [8 h]; COST [3859.76] | 3,859.76 | 3,859.76 |
| TAEXSTCL090003 |  | Install GRP Pipes & Fittings | 8d | 2026-06-04 A | 2026-06-06 A | TAEXSTCL0900021 | 100% |  | 2026-09-19 | 2026-09-27 |  |  | EXCAVATOR [64 h]; LABOR [64 h]; EXCAVATOR OPERATOR [64 h]; PLUMBER [112 h]; COST [98630] | 98,630 | 98,630 |
| TAEXSTCL090005 |  | Manhole Installation with backfilling | 12d | 2026-06-13 A | 2026-12-13 | TAEXSTCL090004 FF+10d, TAEXSTCL090003, TAPQDVST00061 | 95% | 0.6d | 2026-11-07 | 2026-11-21 | 18.9d | 16.4d | DUMP TRUCK [100 h]; EXCAVATOR [96 h]; LABOR [192 h]; DUMP TRUCK DRIVER [100 h]; EXCAVATOR OPERATOR [96 h]; PLUMBER [96 h]; MASON [192 h]; COST [99630] | 99,630 | 94,648.5 |
| TAEXSTCL090004 |  | Backfilling Works for Trench | 13d | 2026-06-24 A | 2026-08-08 A | TAEXSTCL090003 FF+15d | 100% |  | 2026-09-05 | 2026-09-19 |  |  | DUMP TRUCK [104 h]; WATER TANKER [38 h]; EXCAVATOR [72 h]; LABOR [104 h]; DUMP TRUCK DRIVER [104 h]; WATER TANKER DRIVER [38 h]; EXCAVATOR OPERATOR [72 h]; COMPACTOR [32 h]; COST [92300] | 92,300 | 92,300 |
| TAEXSTCL090007 |  | Leakage Test | 3d | 2026-08-08 A | 2027-01-11 | TAEXSTCL090005, TAEXSTCL090006 | 85% | 0.45d | 2026-12-02 | 2026-12-06 | 52.95d | 0d | WATER TANKER [24 h]; LABOR [24 h]; WATER TANKER DRIVER [24 h]; PLUMBER [24 h]; COST [11200] | 11,200 | 9,520 |
| TAEXSTCL090006 |  | Install Catch Basin with UPVC Pipes & Fittings | 9d | 2026-12-31 | 2027-01-11 | TAEXSTCL090005, TAEXSTCU280006, TAEXSTCL080006 |  |  |  |  | 2.5d | 0d | EXCAVATOR [36 h]; LABOR [72 h]; EXCAVATOR OPERATOR [36 h]; PLUMBER [72 h]; COST [89800] | 89,800 |  |
|  | 4 | **Upgrade Local 06** |  | 2026-10-10 | 2027-09-02 |  |  |  |  |  |  |  |  |  |  |
|  | 22 | **Electrical Works** |  | 2026-10-10 | 2027-09-02 |  |  |  |  |  |  |  |  |  |  |
| TAEXELCU060002 |  | Drawpit and PVC Pipes Installation | 6d | 2026-10-10 A | 2027-08-12 | TAEXELCU060001, TAPQDVEL0005 | 33% | 4.02d | 2027-08-09 | 2027-08-16 | -26.28d | 0d | ELECTRACIAN [80 h]; EXCAVATOR [40 h]; LABOR [80 h]; EXCAVATOR OPERATOR [40 h]; COST [7000] | 7,000 | 2,310 |
| TAEXELCU060003 |  | Road Crossing Ducts | 3d | 2026-10-10 A | 2027-08-15 | TAEXELCU060002 | 33% | 2.01d | 2027-08-16 | 2027-08-19 | -26.28d | 0d | DUMP TRUCK [40 h]; EXCAVATOR [40 h]; DUMP TRUCK DRIVER [40 h]; EXCAVATOR OPERATOR [40 h]; COST [350] | 350 | 115.5 |
| TAEXELCU060001 |  | Trench Cut off | 10d | 2027-07-27 | 2027-08-08 | TAEXELCU140001 |  |  |  |  | -29.3d | 0d | DUMP TRUCK [160 h]; EXCAVATOR [80 h]; LABOR [40 h]; DUMP TRUCK DRIVER [160 h]; EXCAVATOR OPERATOR [80 h]; COST [10530] | 10,530 |  |
| TAEXELCU060006 |  | Poles RC Foundation | 4d | 2027-08-12 | 2027-08-17 | TAEXELCU060002, TAPQDVEL0005 |  |  |  |  | -19.27d | 0d | EXCAVATOR [40 h]; LABOR [40 h]; EXCAVATOR OPERATOR [40 h]; COST [12500] | 12,500 |  |
| TAEXELCU060004 |  | Trench Backfilling | 10d | 2027-08-15 | 2027-08-26 | TAEXELCU060003 |  |  |  |  | -26.28d | 0d | DUMP TRUCK [120 h]; WATER TANKER [40 h]; EXCAVATOR [60 h]; LABOR [60 h]; DUMP TRUCK DRIVER [60 h]; WATER TANKER DRIVER [40 h]; EXCAVATOR OPERATOR [60 h]; COMPACTOR [70 h]; COST [10230] | 10,230 |  |
| TAEXELCU060008 |  | Lighting Pole Installation with Luminares | 6d | 2027-08-17 | 2027-08-24 | TAEXELCU060006 |  |  |  |  | -19.27d | 10.03d | ELECTRACIAN [40 h]; CRANE [40 h]; CRANE OPERATOR [40 h]; COST [122050] | 122,050 |  |
| TAEXELCU060005 |  | Cables Pulling | 4d | 2027-08-26 | 2027-08-31 | TAEXELCU060002, TAEXELCU060003, TAEXELCU060004 |  |  |  |  | -26.28d | 0d | ELECTRACIAN [120 h]; LABOR [160 h]; COST [224000] | 224,000 |  |
| TAEXELCU060007 |  | Earthing cables | 2d | 2027-08-31 | 2027-09-02 | TAEXELCU060006, TAEXELCU060005, TAEXELCL090007 |  |  |  |  | -26.28d | 0.53d | ELECTRACIAN [80 h]; LABOR [40 h]; COST [2320] | 2,320 |  |

| ID | WBS | Activity | Duration | Start | Finish | Predecessors | Complete | Remaining | Planned start | Planned finish | Total float | Free float | Resources | Cost | Actual cost |
| --- | --- | --- | --- | --- | --- | --- | --- | --- | --- | --- | --- | --- | --- | --- | --- |
|  | 23 | **CCTV Works** |  | 2027-06-27 | 2027-08-09 |  |  |  |  |  |  |  |  |  |  |
| TAEXCCCU060001 |  | Pipe Installation with manhole | 8d | 2027-06-27 | 2027-07-06 | TAEXCCCU140001 SS |  |  |  |  | -9.55d | 0d | ELECTRACIAN [96 h]; LABOR [192 h]; COST [23144] | 23,144 |  |
| TAEXCCCU060002 |  | CCTV Swiches Lighting panels Installation | 10d | 2027-07-06 | 2027-07-18 | TAEXCCCU060001 |  |  |  |  | 2.45d | 0d | ELECTRACIAN [160 h]; EXCAVATOR [40 h]; LABOR [160 h]; EXCAVATOR OPERATOR [40 h]; COST [2515] | 2,515 |  |
| TAEXCCCU060003 |  | Cable laying and connected with Panels | 9d | 2027-07-18 | 2027-07-28 | TAEXCCCU060002 |  |  |  |  | 2.45d | 0d | ELECTRACIAN [148 h]; LABOR [148 h]; COST [19654] | 19,654 |  |
| TAEXCCCU060004 |  | Pole Installation with IP Outdoor CCTV POE Camera | 10d | 2027-07-28 | 2027-08-09 | TAEXCCCU060003 |  |  |  |  | 2.45d | 18.72d | ELECTRACIAN [80 h]; EXCAVATOR [60 h]; LABOR [80 h]; EXCAVATOR OPERATOR [60 h]; COST [6446] | 6,446 |  |
|  | 7 | **Upgrade Local 07** |  | 2026-08-22 | 2027-09-04 |  |  |  |  |  |  |  |  |  |  |
|  | 23 | **Electrical Works** |  | 2026-08-22 | 2027-09-04 |  |  |  |  |  |  |  |  |  |  |
| TAEXELCU070003 |  | Road Crossing Ducts | 3d | 2026-08-22 A | 2027-08-21 | TAEXELCU070002 | 43% | 1.71d | 2027-07-19 | 2027-07-22 | -26.81d | 0d | DUMP TRUCK [40 h]; EXCAVATOR [40 h]; DUMP TRUCK DRIVER [40 h]; EXCAVATOR OPERATOR [40 h]; COST [350] | 350 | 150.5 |
| TAEXELCU070002 |  | Drawpit and PVC Pipes Installation | 5d | 2026-08-22 A | 2027-08-19 | TAEXELCU070001, TAPQDVEL0005 | 43% | 2.85d | 2027-07-14 | 2027-07-20 | -26.81d | 0d | ELECTRACIAN [80 h]; EXCAVATOR [40 h]; LABOR [80 h]; EXCAVATOR OPERATOR [40 h]; COST [5280] | 5,280 | 2,270.4 |
| TAEXELCU070001 |  | Trench Cut off | 7d | 2027-08-08 | 2027-08-16 | TAEXELCU060001 |  |  |  |  | -29.3d | 0d | DUMP TRUCK [112 h]; EXCAVATOR [56 h]; LABOR [28 h]; DUMP TRUCK DRIVER [112 h]; EXCAVATOR OPERATOR [56 h]; COST [7950] | 7,950 |  |
| TAEXELCU070006 |  | Poles RC Foundation | 3d | 2027-08-19 | 2027-08-23 | TAEXELCU070002, TAPQDVEL0005 |  |  |  |  | -23.1d | 0d | EXCAVATOR [40 h]; LABOR [40 h]; EXCAVATOR OPERATOR [40 h]; COST [9510] | 9,510 |  |
| TAEXELCU070004 |  | Trench Backfilling | 8d | 2027-08-21 | 2027-08-30 | TAEXELCU070003 |  |  |  |  | -26.81d | 0d | DUMP TRUCK [120 h]; WATER TANKER [40 h]; EXCAVATOR [60 h]; LABOR [60 h]; DUMP TRUCK DRIVER [120 h]; WATER TANKER DRIVER [40 h]; EXCAVATOR OPERATOR [60 h]; COMPACTOR [60 h]; COST [6350] | 6,350 |  |
| TAEXELCU070008 |  | Lighting Pole Installation with Luminares | 5d | 2027-08-23 | 2027-08-29 | TAEXELCU070006 |  |  |  |  | -23.1d | 6.2d | ELECTRACIAN [40 h]; CRANE [40 h]; CRANE OPERATOR [40 h]; COST [91500] | 91,500 |  |
| TAEXELCU070005 |  | Cables Pulling | 3d | 2027-08-30 | 2027-09-02 | TAEXELCU070002, TAEXELCU070003, TAEXELCU070004 |  |  |  |  | -26.81d | 0d | ELECTRACIAN [120 h]; LABOR [160 h]; COST [168000] | 168,000 |  |
| TAEXELCU070007 |  | Earthing cables | 2d | 2027-09-02 | 2027-09-04 | TAEXELCU070006, TAEXELCU070005, TAEXELCU060007 |  |  |  |  | -26.81d | 0d | ELECTRACIAN [80 h]; LABOR [40 h]; COST [2320] | 2,320 |  |
|  | 24 | **CCTV Works** |  | 2027-07-06 | 2027-08-18 |  |  |  |  |  |  |  |  |  |  |
| TAEXCCCU070001 |  | Pipe Installation with manhole | 8d | 2027-07-06 | 2027-07-15 | TAEXCCCU060001 |  |  |  |  | -9.55d | 0d | ELECTRACIAN [96 h]; LABOR [192 h]; COST [23144] | 23,144 |  |
| TAEXCCCU070002 |  | CCTV Swiches Lighting panels Installation | 10d | 2027-07-15 | 2027-07-27 | TAEXCCCU070001 |  |  |  |  | -5.55d | 0d | ELECTRACIAN [160 h]; EXCAVATOR [40 h]; LABOR [160 h]; EXCAVATOR OPERATOR [40 h]; COST [2515] | 2,515 |  |
| TAEXCCCU070003 |  | Cable laying and connected with Panels | 9d | 2027-07-27 | 2027-08-07 | TAEXCCCU070002 |  |  |  |  | -5.55d | 0d | ELECTRACIAN [148 h]; LABOR [148 h]; COST [19654] | 19,654 |  |
| TAEXCCCU070004 |  | Pole Installation with IP Outdoor CCTV POE Camera | 10d | 2027-08-07 | 2027-08-18 | TAEXCCCU070003 |  |  |  |  | -5.55d | 10.72d | ELECTRACIAN [80 h]; EXCAVATOR [60 h]; LABOR [80 h]; EXCAVATOR OPERATOR [60 h]; COST [6446] | 6,446 |  |
|  | 8 | **Upgrade Local 08** |  | 2026-08-02 | 2027-09-06 |  |  |  |  |  |  |  |  |  |  |
|  | 24 | **Electrical Works** |  | 2026-08-02 | 2027-09-06 |  |  |  |  |  |  |  |  |  |  |
| TAEXELCU080001 |  | Trench Cut off | 7d | 2026-08-02 A | 2027-08-17 | TAEXELCU070001 | 85% | 1.05d | 2027-07-03 | 2027-07-11 | -29.3d | 0d | DUMP TRUCK [112 h]; EXCAVATOR [56 h]; LABOR [28 h]; DUMP TRUCK DRIVER [112 h]; EXCAVATOR OPERATOR [56 h]; COST [7950] | 7,950 | 6,757.5 |
| TAEXELCU080002 |  | Drawpit and PVC Pipes Installation | 5d | 2026-08-29 A | 2026-10-18 A | TAEXELCU080001, TAPQDVEL0005 | 100% |  | 2027-07-25 | 2027-07-31 |  |  | ELECTRACIAN [80 h]; EXCAVATOR [40 h]; LABOR [80 h]; EXCAVATOR OPERATOR [40 h]; COST [5280] | 5,280 | 5,280 |
| TAEXELCU080003 |  | Road Crossing Ducts | 3d | 2026-08-29 A | 2026-10-18 A | TAEXELCU080002 | 100% |  | 2027-07-31 | 2027-08-03 |  |  | DUMP TRUCK [40 h]; EXCAVATOR [40 h]; DUMP TRUCK DRIVER [40 h]; EXCAVATOR OPERATOR [40 h]; COST [350] | 350 | 350 |
| TAEXELCU080006 |  | Poles RC Foundation | 3d | 2027-08-19 | 2027-08-23 | TAEXELCU080002, TAPQDVEL0005 |  |  |  |  | -23.8d | 0d | EXCAVATOR [40 h]; LABOR [40 h]; EXCAVATOR OPERATOR [40 h]; COST [9510] | 9,510 |  |
| TAEXELCU080004 |  | Trench Backfilling | 8d | 2027-08-22 | 2027-08-31 | TAEXELCU080003 |  |  |  |  | -25.3d | 0d | DUMP TRUCK [80 h]; WATER TANKER [40 h]; EXCAVATOR [60 h]; LABOR [60 h]; DUMP TRUCK DRIVER [80 h]; WATER TANKER DRIVER [40 h]; EXCAVATOR OPERATOR [60 h]; COMPACTOR [60 h]; COST [6850] | 6,850 |  |
| TAEXELCU080008 |  | Lighting Pole Installation with Luminares | 5d | 2027-08-23 | 2027-08-29 | TAEXELCU080006 |  |  |  |  | -23.8d | 5.5d | ELECTRACIAN [40 h]; CRANE [40 h]; CRANE OPERATOR [40 h]; COST [91500] | 91,500 |  |
| TAEXELCU080005 |  | Cables Pulling | 3d | 2027-08-31 | 2027-09-03 | TAEXELCU080002, TAEXELCU080003, TAEXELCU080004 |  |  |  |  | -25.3d | 1.51d | ELECTRACIAN [120 h]; LABOR [160 h]; COST [168000] | 168,000 |  |
| TAEXELCU080007 |  | Earthing cables | 2d | 2027-09-04 | 2027-09-06 | TAEXELCU080006, TAEXELCU080005, TAEXELCU070007 |  |  |  |  | -26.81d | 0d | ELECTRACIAN [80 h]; LABOR [40 h]; COST [2320] | 2,320 |  |

| ID | WBS | Activity | Duration | Start | Finish | Predecessors | Complete | Planned start | Planned finish | Total float | Free float | Resources | Cost | Actual cost |
| --- | --- | --- | --- | --- | --- | --- | --- | --- | --- | --- | --- | --- | --- | --- |
|  | 25 | **CCTV Works** |  | 2027-07-06 | 2027-08-18 |  |  |  |  |  |  |  |  |  |
| TAEXCCCU080001 |  | Pipe Installation with manhole | 8d | 2027-07-06 | 2027-07-15 | TAEXCCCU070001 SS |  |  |  | -9.55d | 0d | ELECTRACIAN [96 h]; LABOR [192 h]; COST [23144] | 23,144 |  |
| TAEXCCCU080002 |  | CCTV Swiches Lighting panels Installation | 10d | 2027-07-15 | 2027-07-27 | TAEXCCCU080001 |  |  |  | -5.55d | 0d | ELECTRACIAN [160 h]; EXCAVATOR [40 h]; LABOR [160 h]; EXCAVATOR OPERATOR [40 h]; COST [2515] | 2,515 |  |
| TAEXCCCU080003 |  | Cable laying and connected with Panels | 9d | 2027-07-27 | 2027-08-07 | TAEXCCCU080002 |  |  |  | -5.55d | 0d | ELECTRACIAN [148 h]; LABOR [148 h]; COST [19654] | 19,654 |  |
| TAEXCCCU080004 |  | Pole Installation with IP Outdoor CCTV POE Camera | 10d | 2027-08-07 | 2027-08-18 | TAEXCCCU080003 |  |  |  | -5.55d | 10.72d | ELECTRACIAN [80 h]; EXCAVATOR [60 h]; LABOR [80 h]; EXCAVATOR OPERATOR [60 h]; COST [6446] | 6,446 |  |
|  | 9 | **Upgrade Local 09** |  | 2026-10-01 | 2027-09-08 |  |  |  |  |  |  |  |  |  |
|  | 26 | **Electrical Works** |  | 2026-10-01 | 2027-09-08 |  |  |  |  |  |  |  |  |  |
| TAEXELCU090002 |  | Drawpit and PVC Pipes Installation | 5d | 2026-10-01 A | 2026-10-03 A | TAEXELCU090001, TAPQDVEL0005 | 100% | 2027-08-19 | 2027-08-25 |  |  | ELECTRACIAN [80 h]; EXCAVATOR [40 h]; LABOR [80 h]; EXCAVATOR OPERATOR [40 h]; COST [5280] | 5,280 | 5,280 |
| TAEXELCU090003 |  | Road Crossing Ducts | 3d | 2026-10-01 A | 2026-10-03 A | TAEXELCU090002 | 100% | 2027-08-25 | 2027-08-29 |  |  | DUMP TRUCK [40 h]; EXCAVATOR [40 h]; DUMP TRUCK DRIVER [40 h]; EXCAVATOR OPERATOR [40 h]; COST [350] | 350 | 350 |
| TAEXELCU090001 |  | Trench Cut off | 7d | 2027-08-17 | 2027-08-25 | TAEXELCU080001 |  |  |  | -29.3d | 0d | DUMP TRUCK [112 h]; EXCAVATOR [56 h]; LABOR [28 h]; DUMP TRUCK DRIVER [112 h]; EXCAVATOR OPERATOR [56 h]; COST [7950] | 7,950 |  |
| TAEXELCU090004 |  | Trench Backfilling | 8d | 2027-08-25 | 2027-09-03 | TAEXELCU090003 |  |  |  | -26.3d | 0d | DUMP TRUCK [100 h]; WATER TANKER [40 h]; EXCAVATOR [60 h]; LABOR [60 h]; DUMP TRUCK DRIVER [100 h]; WATER TANKER DRIVER [40 h]; EXCAVATOR OPERATOR [60 h]; COMPACTOR [60 h]; COST [7500] | 7,500 |  |
| TAEXELCU090006 |  | Poles RC Foundation | 4d | 2027-08-25 | 2027-08-30 | TAEXELCU090002, TAPQDVEL0005 |  |  |  | -29.3d | 0d | EXCAVATOR [40 h]; LABOR [40 h]; EXCAVATOR OPERATOR [40 h]; COST [9510] | 9,510 |  |
| TAEXELCU090008 |  | Lighting Pole Installation with Luminares | 5d | 2027-08-30 | 2027-09-04 | TAEXELCU090006 |  |  |  | -29.3d | 0d | ELECTRACIAN [40 h]; CRANE [40 h]; CRANE OPERATOR [40 h]; COST [91050] | 91,050 |  |
| TAEXELCU090005 |  | Cables Pulling | 3d | 2027-09-03 | 2027-09-06 | TAEXELCU090002, TAEXELCU090003, TAEXELCU090004 |  |  |  | -26.3d | 0.51d | ELECTRACIAN [120 h]; LABOR [160 h]; COST [168000] | 168,000 |  |
| TAEXELCU090007 |  | Earthing cables | 2d | 2027-09-06 | 2027-09-08 | TAEXELCU090006, TAEXELCU090005, TAEXELCU080007 |  |  |  | -26.81d | 0d | ELECTRACIAN [80 h]; LABOR [40 h]; COST [2320] | 2,320 |  |
|  | 1 | **CCTV Works** |  | 2027-07-15 | 2027-08-28 |  |  |  |  |  |  |  |  |  |
| TAEXCCCU090001 |  | Pipe Installation with manhole | 7d | 2027-07-15 | 2027-07-24 | TAEXCCCU080001 |  |  |  | -9.55d | 0d | ELECTRACIAN [96 h]; LABOR [192 h]; COST [23144] | 23,144 |  |
| TAEXCCCU090002 |  | CCTV Swiches Lighting panels Installation | 10d | 2027-07-24 | 2027-08-04 | TAEXCCCU090001 |  |  |  | -9.55d | 0d | ELECTRACIAN [160 h]; EXCAVATOR [40 h]; LABOR [160 h]; EXCAVATOR OPERATOR [40 h]; COST [2515] | 2,515 |  |
| TAEXCCCU090003 |  | Cable laying and connected with Panels | 10d | 2027-08-04 | 2027-08-16 | TAEXCCCU090002 |  |  |  | -9.55d | 0d | ELECTRACIAN [148 h]; LABOR [148 h]; COST [19654] | 19,654 |  |
| TAEXCCCU090004 |  | Pole Installation with IP Outdoor CCTV POE Camera | 10d | 2027-08-16 | 2027-08-28 | TAEXCCCU090003 |  |  |  | -9.55d | 6.72d | ELECTRACIAN [80 h]; EXCAVATOR [60 h]; LABOR [80 h]; EXCAVATOR OPERATOR [60 h]; COST [6446] | 6,446 |  |
|  | 10 | **Upgrade Local 12** |  | 2026-06-16 | 2027-09-13 |  |  |  |  |  |  |  |  |  |
|  | 18 | **Road works** |  | 2027-03-24 | 2027-06-30 |  |  |  |  |  |  |  |  |  |
| TAEXRDCU120002 |  | Precast Concret Kerps | 18d | 2027-03-24 | 2027-04-14 | TAEXRDCU290005 |  |  |  | 28.96d | 0d | LABOR [580 h]; COST [34566] | 34,566 |  |
| TAEXRDCU120001 |  | BWC Asphalt Wearing Course with RC | 1d | 2027-05-31 | 2027-06-01 | TAEXRDCU120002 FS+40d |  |  |  | 28.96d | 0d | ROLEER [16 h]; DUMP TRUCK [32 h]; MILLING MACHINE [8 h]; WHEEL ROLLER [16 h]; LABOR [40 h]; DUMP TRUCK DRIVER [32 h]; MILLING MACHINE OPERATOR [8 h]; WHEEL ROLLER OPERATOR [16 h]; ROLLER OPERATOR [16 h]; COST [41511] | 41,511 |  |
| TAEXRDCU120003 |  | Precast Interlock Works | 16d | 2027-06-01 | 2027-06-20 | TAEXRDCU120002, TAEXRDCU120001 |  |  |  | 28.96d | 0d | LABOR [275 h]; COST [37408] | 37,408 |  |
| TAEXRDCU120004 |  | Stone Paving works | 5d | 2027-06-20 | 2027-06-26 | TAEXRDCU120003 |  |  |  | 28.96d | 0d | DUMP TRUCK [32 h]; LABOR [160 h]; DUMP TRUCK DRIVER [32 h]; COST [47000] | 47,000 |  |
| TAEXRDCU120005 |  | Road Marking | 1d | 2027-06-26 | 2027-06-27 | TAEXRDCU120004 |  |  |  | 28.96d | 0d | LABOR [32 h]; COST [4100] | 4,100 |  |
| TAEXRDCU120006 |  | Traffic Sinage | 3d | 2027-06-27 | 2027-06-30 | TAEXRDCU120005 |  |  |  | 28.96d | 27.12d | EXCAVATOR [8 h]; LABOR [32 h]; EXCAVATOR OPERATOR [8 h]; COST [48000] | 48,000 |  |

| ID | WBS | Activity | Duration | Start | Finish | Predecessors | Complete | Remaining | Planned start | Planned finish | Total float | Free float | Resources | Cost | Actual cost |
| --- | --- | --- | --- | --- | --- | --- | --- | --- | --- | --- | --- | --- | --- | --- | --- |
|  | 19 | **Electrical Works** |  | 2026-06-16 | 2027-09-13 |  |  |  |  |  |  |  |  |  |  |
| TAEXELCU120001 |  | Trench Cut off | 12d | 2026-06-16 A | 2027-05-04 | TAEXELCU330001 | 49% | 6.12d | 2027-02-23 | 2027-03-09 | -29.3d | 0d | DUMP TRUCK [240 h]; EXCAVATOR [120 h]; LABOR [120 h]; DUMP TRUCK DRIVER [240 h]; EXCAVATOR OPERATOR [120 h]; COST [15630] | 15,630 | 7,658.7 |
| TAEXELCU120002 |  | Drawpit and PVC Pipes Installation | 9d | 2026-07-25 A | 2027-05-06 | TAEXELCU120001, TAPQDVEL0005 | 79% | 1.89d | 2027-03-14 | 2027-03-24 | 57.96d | 0d | ELECTRACIAN [80 h]; EXCAVATOR [40 h]; LABOR [80 h]; EXCAVATOR OPERATOR [40 h]; COST [9850] | 9,850 | 7,781.5 |
| TAEXELCU120003 |  | Road Crossing Ducts | 4d | 2026-07-25 A | 2027-05-06 | TAEXELCU120002 | 79% | 0.84d | 2027-03-24 | 2027-03-29 | 63.72d | 17.79d | DUMP TRUCK [40 h]; EXCAVATOR [40 h]; DUMP TRUCK DRIVER [40 h]; EXCAVATOR OPERATOR [40 h]; COST [450] | 450 | 355.5 |
| TAEXELCU120005 |  | Cables Pulling | 8d | 2026-07-26 A | 2027-06-17 | TAEXELCU120002, TAEXELCU120003, TAEXELCU120004 | 27% | 5.84d | 2027-05-02 | 2027-05-11 | 45.93d | 72.74d | ELECTRACIAN [120 h]; LABOR [160 h]; COST [348000] | 348,000 | 93,960 |
| TAEXELCU120004 |  | Trench Backfilling | 17d | 2026-08-15 A | 2027-06-10 | TAEXELCU120003, TAEXELCL010002 | 32% | 11.56d | 2027-04-25 | 2027-05-15 | 45.93d | 0d | DUMP TRUCK [60 h]; WATER TANKER [20 h]; EXCAVATOR [30 h]; LABOR [60 h]; DUMP TRUCK DRIVER [60 h]; WATER TANKER DRIVER [20 h]; EXCAVATOR OPERATOR [30 h]; COMPACTOR [30 h]; COST [82350] | 82,350 | 26,352 |
| TAEXELCU120006 |  | Poles RC Foundation | 7d | 2027-05-06 | 2027-05-15 | TAEXELCU120002, TAPQDVEL0005 |  |  |  |  | 57.96d | 0d | EXCAVATOR [40 h]; LABOR [40 h]; EXCAVATOR OPERATOR [40 h]; COST [21500] | 21,500 |  |
| TAEXELCU120008 |  | Lighting Pole Installation with Luminares | 10d | 2027-05-15 | 2027-05-26 | TAEXELCU120006 |  |  |  |  | 57.96d | 87.26d | ELECTRACIAN [40 h]; CRANE [40 h]; CRANE OPERATOR [40 h]; COST [81350] | 81,350 |  |
| TAEXELCU120007 |  | Earthing cables | 4d | 2027-09-08 | 2027-09-13 | TAEXELCU120006, TAEXELCU120005, TAEXELCU090007 |  |  |  |  | -26.81d | 0d | ELECTRACIAN [80 h]; LABOR [40 h]; COST [4523] | 4,523 |  |
|  | 1 | **Telecommunication Works** |  | 2027-04-25 | 2027-08-08 |  |  |  |  |  |  |  |  |  |  |
| TAEXTCCU120001 |  | Trench Cut off | 15d | 2027-04-25 | 2027-05-12 | TAEXTCCU330001 |  |  |  |  | -17.61d | 0d | DUMP TRUCK [150 h]; EXCAVATOR [130 h]; LABOR [50 h]; DUMP TRUCK DRIVER [150 h]; EXCAVATOR OPERATOR [130 h]; COST [24530] | 24,530 |  |
| TAEXTCCU120002 |  | Drawpit and PVC Pipes Installation | 9d | 2027-07-04 | 2027-07-14 | TAEXTCCU120001, TAEXTCCL090002 |  |  |  |  | -20.27d | 0d | ELECTRACIAN [80 h]; EXCAVATOR [40 h]; LABOR [38 h]; EXCAVATOR OPERATOR [40 h]; COST [50500] | 50,500 |  |
| TAEXTCCU120003 |  | Road Crossing Ducts | 4d | 2027-07-14 | 2027-07-19 | TAEXTCCU120002 |  |  |  |  | -6.27d | 0d | DUMP TRUCK [40 h]; EXCAVATOR [40 h]; DUMP TRUCK DRIVER [40 h]; EXCAVATOR OPERATOR [40 h]; COST [12500] | 12,500 |  |
| TAEXTCCU120004 |  | Trench Backfilling | 17d | 2027-07-19 | 2027-08-08 | TAEXTCCU120003 |  |  |  |  | -6.27d | 14d | DUMP TRUCK [80 h]; WATER TANKER [20 h]; EXCAVATOR [40 h]; LABOR [60 h]; DUMP TRUCK DRIVER [80 h]; WATER TANKER DRIVER [20 h]; EXCAVATOR OPERATOR [40 h]; COMPACTOR [20 h]; COST [37450] | 37,450 |  |
|  | 15 | **CCTV Works** |  | 2027-04-11 | 2027-06-06 |  |  |  |  |  |  |  |  |  |  |
| TAEXCCCU120001 |  | Pipe Installation with manhole | 11d | 2027-04-11 | 2027-04-24 | TAEXCCCU330001 |  |  |  |  | -14.55d | 0d | ELECTRACIAN [96 h]; LABOR [192 h]; COST [22767] | 22,767 |  |
| TAEXCCCU120002 |  | CCTV Swiches Lighting panels Installation | 12d | 2027-04-24 | 2027-05-08 | TAEXCCCU120001 |  |  |  |  | 57.45d | 0d | ELECTRACIAN [480 h]; EXCAVATOR [96 h]; LABOR [480 h]; EXCAVATOR OPERATOR [96 h]; COST [2264] | 2,264 |  |
| TAEXCCCU120003 |  | Cable laying and connected with Panels | 11d | 2027-05-08 | 2027-05-20 | TAEXCCCU120002 |  |  |  |  | 57.45d | 0d | ELECTRACIAN [160 h]; LABOR [320 h]; COST [24025] | 24,025 |  |
| TAEXCCCU120004 |  | Pole Installation with IP Outdoor CCTV POE Camera | 14d | 2027-05-20 | 2027-06-06 | TAEXCCCU120003 |  |  |  |  | 57.45d | 73.72d | ELECTRACIAN [112 h]; EXCAVATOR [60 h]; LABOR [96 h]; EXCAVATOR OPERATOR [60 h]; COST [4528] | 4,528 |  |
|  | 2 | **Potable Networks** |  | 2026-11-14 | 2027-03-21 |  |  |  |  |  |  |  |  |  |  |
| TAEXPTCU120001 |  | Excavation works for Trench | 12d | 2026-11-14 | 2026-11-28 | TAEXPTCU210001 |  |  |  |  | 62.04d | 0d | DUMP TRUCK [180 h]; EXCAVATOR [90 h]; LABOR [50 h]; DUMP TRUCK DRIVER [180 h]; EXCAVATOR OPERATOR [90 h]; COST [56200] | 56,200 |  |
| TAEXPTCU120002 |  | Bedding Works | 2d | 2026-11-28 | 2026-11-30 | TAEXPTCU120001 |  |  |  |  | 101.04d | 31d | DUMP TRUCK [16 h]; EXCAVATOR [16 h]; LABOR [32 h]; DUMP TRUCK DRIVER [16 h]; EXCAVATOR OPERATOR [16 h]; COST [7050] | 7,050 |  |
| TAEXPTCU120003 |  | Install Pipes & Fittings | 8d | 2027-01-05 | 2027-01-14 | TAEXPTCU120002, TAEXPTCU330003 |  |  |  |  | 70.04d | 0d | LABOR [128 h]; PLUMBER [64 h]; COST [78112] | 78,112 |  |
| TAEXPTCU120004 |  | Backfilling Works for Trench | 18d | 2027-01-14 | 2027-02-04 | TAEXPTCU120003 |  |  |  |  | 70.04d | 0d | DUMP TRUCK [280 h]; WATER TANKER [70 h]; EXCAVATOR [140 h]; LABOR [70 h]; DUMP TRUCK DRIVER [280 h]; WATER TANKER DRIVER [70 h]; EXCAVATOR OPERATOR [140 h]; COMPACTOR [128 h]; COST [24158] | 24,158 |  |
| TAEXPTCU120005 |  | Install Valves with fittings | 4d | 2027-01-31 | 2027-02-04 | TAEXPTCU120004 FF, TAPQDVPT00021 |  |  |  |  | 70.04d | 0d | LABOR [64 h]; PLUMBER [64 h]; COST [4600] | 4,600 |  |
| TAEXPTCU120006 |  | Install fire hydrent | 9d | 2027-02-04 | 2027-02-15 | TAEXPTCU120003, TAEXPTCU120005 |  |  |  |  | 70.04d | 8d | LABOR [140 h]; PLUMBER [72 h]; COST [28000] | 28,000 |  |
| TAEXPTCU120007 |  | Valve Chamber works | 16d | 2027-02-24 | 2027-03-15 | TAEXPTCU120006, TAEXPTCU330007 |  |  |  |  | 62.04d | 0d | WATER TANKER [24 h]; EXCAVATOR [24 h]; CONCRET MIXER [32 h]; LABOR [56 h]; WATER TANKER DRIVER [24 h]; EXCAVATOR OPERATOR [24 h]; PLUMBER [32 h]; STEEL FIXER [32 h]; CARPENTER [30 h]; MASON [32 h]; CONCRET MIXER OPERATOR [32 h]; COST [28900] | 28,900 |  |
| TAEXPTCU120008 |  | Inspection Test | 5d | 2027-03-15 | 2027-03-21 | TAEXPTCU120007 |  |  |  |  | 117.14d | 55.1d | WATER TANKER [40 h]; LABOR [32 h]; WATER TANKER DRIVER [40 h]; PLUMBER [40 h]; COST [5100] | 5,100 |  |

| ID | WBS | Activity | Duration | Start | Finish | Predecessors | Complete | Remaining | Planned start | Planned finish | Total float | Free float | Resources | Cost | Actual cost |
| --- | --- | --- | --- | --- | --- | --- | --- | --- | --- | --- | --- | --- | --- | --- | --- |
|  | 3 | **TSE Networks** |  | 2026-09-27 | 2027-06-06 |  |  |  |  |  |  |  |  |  |  |
| TAEXTSCU120005 |  | Install Valves with fittings | 4d | 2026-09-27 A | 2027-05-16 | TAEXTSCU120004 FF | 25% | 3d | 2027-04-21 | 2027-04-26 | 51.42d | 0d | LABOR [64 h]; PLUMBER [64 h]; COST [11490] | 11,490 | 2,872.5 |
| TAEXTSCU120006 |  | Valve Chamber works | 18d | 2026-09-27 A | 2027-05-31 | TAEXTSCU120005 | 25% | 13.5d | 2027-04-26 | 2027-05-17 | 51.42d | 0d | WATER TANKER [30 h]; EXCAVATOR [70 h]; CONCRET MIXER [80 h]; LABOR [140 h]; WATER TANKER DRIVER [30 h]; EXCAVATOR OPERATOR [70 h]; PLUMBER [80 h]; STEEL FIXER [80 h]; CARPENTER [140 h]; MASON [80 h]; CONCRET MIXER OPERATOR [80 h]; COST [58400] | 58,400 | 14,600 |
| TAEXTSCU120001 |  | Excavation works for Trench | 22d | 2027-01-19 | 2027-02-14 | TAEXTSCU210001 |  |  |  |  | 51.42d | 0d | DUMP TRUCK [192 h]; EXCAVATOR [96 h]; LABOR [30 h]; DUMP TRUCK DRIVER [192 h]; EXCAVATOR OPERATOR [96 h]; COST [50230] | 50,230 |  |
| TAEXTSCU120002 |  | Bedding Works | 2d | 2027-02-14 | 2027-02-16 | TAEXTSCU120001 |  |  |  |  | 101.42d | 50d | DUMP TRUCK [16 h]; EXCAVATOR [16 h]; LABOR [32 h]; DUMP TRUCK DRIVER [16 h]; EXCAVATOR OPERATOR [16 h]; COST [10530] | 10,530 |  |
| TAEXTSCU120003 |  | Install Pipes & Fittings | 8d | 2027-04-15 | 2027-04-25 | TAEXTSCU120002, TAEXTSCU330003 |  |  |  |  | 51.42d | 0d | LABOR [128 h]; PLUMBER [128 h]; COST [152340] | 152,340 |  |
| TAEXTSCU120004 |  | Backfilling Works for Trench | 18d | 2027-04-25 | 2027-05-16 | TAEXTSCU120003 |  |  |  |  | 51.42d | 0d | DUMP TRUCK [80 h]; WATER TANKER [32 h]; EXCAVATOR [40 h]; LABOR [60 h]; DUMP TRUCK DRIVER [80 h]; WATER TANKER DRIVER [32 h]; EXCAVATOR OPERATOR [40 h]; COMPACTOR [40 h]; COST [29800] | 29,800 |  |
| TAEXTSCU120007 |  | Inspection Test | 5d | 2027-05-31 | 2027-06-06 | TAEXTSCU120006 |  |  |  |  | 51.42d | 0d | WATER TANKER [40 h]; LABOR [64 h]; WATER TANKER DRIVER [40 h]; PLUMBER [64 h]; COST [6520] | 6,520 |  |
|  | 12 | **Sewerage Networks** |  | 2026-11-11 | 2027-01-24 |  |  |  |  |  |  |  |  |  |  |
| TAEXSWCU120001 |  | Excavation works for Trench | 16d | 2026-11-11 | 2026-11-30 | TAEXSWCU210001 |  |  |  |  | 131.68d | 0d | DUMP TRUCK [256 h]; EXCAVATOR [128 h]; LABOR [64 h]; DUMP TRUCK DRIVER [256 h]; EXCAVATOR OPERATOR [128 h]; COST [72600] | 72,600 |  |
| TAEXSWCU120002 |  | Bedding Works | 4d | 2026-11-30 | 2026-12-05 | TAEXSWCU120001 |  |  |  |  | 160.68d | 0d | DUMP TRUCK [16 h]; EXCAVATOR [16 h]; LABOR [64 h]; DUMP TRUCK DRIVER [16 h]; EXCAVATOR OPERATOR [16 h]; COST [37944.4] | 37,944.45 |  |
| TAEXSWCU120003 |  | Install GRP Pipes & Fittings | 14d | 2026-12-05 | 2026-12-21 | TAEXSWCU120002 |  |  |  |  | 160.68d | 0d | EXCAVATOR [112 h]; LABOR [224 h]; EXCAVATOR OPERATOR [112 h]; PLUMBER [112 h]; COST [62510] | 62,510 |  |
| TAEXSWCU120004 |  | Backfilling Works for Trench | 13d | 2026-12-23 | 2027-01-07 | TAEXSWCU120003 FF+15d |  |  |  |  | 160.68d | 0d | DUMP TRUCK [208 h]; WATER TANKER [104 h]; EXCAVATOR [104 h]; LABOR [104 h]; DUMP TRUCK DRIVER [208 h]; WATER TANKER DRIVER [104 h]; EXCAVATOR OPERATOR [104 h]; COMPACTOR [104 h]; COST [85200] | 85,200 |  |
| TAEXSWCU120005 |  | Manhole Installation with backfilling | 12d | 2027-01-05 | 2027-01-19 | TAEXSWCU120004 FF+10d, TAEXSWCU120003, TAPQDVSW00021 |  |  |  |  | 160.68d | 0d | DUMP TRUCK [96 h]; EXCAVATOR [96 h]; LABOR [192 h]; DUMP TRUCK DRIVER [96 h]; EXCAVATOR OPERATOR [96 h]; PLUMBER [96 h]; MASON [32 h]; COST [47560] | 47,560 |  |
| TAEXSWCU120006 |  | Leakage Test | 4d | 2027-01-19 | 2027-01-24 | TAEXSWCU120005 |  |  |  |  | 160.68d | 37.97d | WATER TANKER [32 h]; LABOR [64 h]; WATER TANKER DRIVER [32 h]; PLUMBER [32 h]; COST [22236.2] | 22,236.15 |  |
|  | 4 | **Storm Networks** |  | 2027-05-26 | 2027-08-12 |  |  |  |  |  |  |  |  |  |  |
| TAEXSTCU120001 |  | Excavation works for Trench | 18d | 2027-05-26 | 2027-06-16 | TAEXSTCU330001, TAEXELCU330001 |  |  |  |  | 0.97d | 0d | DUMP TRUCK [256 h]; EXCAVATOR [128 h]; LABOR [64 h]; DUMP TRUCK DRIVER [256 h]; EXCAVATOR OPERATOR [128 h]; COST [136005] | 136,005.36 |  |
| TAEXSTCU120002 |  | Bedding Works | 4d | 2027-06-16 | 2027-06-21 | TAEXSTCU120001 |  |  |  |  | 0.97d | 0d | DUMP TRUCK [16 h]; EXCAVATOR [16 h]; LABOR [64 h]; DUMP TRUCK DRIVER [16 h]; EXCAVATOR OPERATOR [16 h]; COST [68846.9] | 68,846.88 |  |
| TAEXSTCU120003 |  | Install GRP Pipes & Fittings | 14d | 2027-06-21 | 2027-07-07 | TAEXSTCU120002 |  |  |  |  | 0.97d | 0d | EXCAVATOR [112 h]; LABOR [112 h]; EXCAVATOR OPERATOR [112 h]; PLUMBER [112 h]; COST [82556.9] | 82,556.88 |  |
| TAEXSTCU120004 |  | Backfilling Works for Trench | 13d | 2027-07-10 | 2027-07-25 | TAEXSTCU120003 FF+15d |  |  |  |  | 0.97d | 0d | DUMP TRUCK [192 h]; WATER TANKER [96 h]; EXCAVATOR [96 h]; LABOR [208 h]; DUMP TRUCK DRIVER [192 h]; WATER TANKER DRIVER [96 h]; EXCAVATOR OPERATOR [96 h]; COMPACTOR [96 h]; COST [55600] | 55,600 |  |
| TAEXSTCU120005 |  | Manhole Installation with backfilling | 12d | 2027-07-11 | 2027-07-25 | TAEXSTCU120004 FF, TAEXSTCU120003, TAPQDVST00061 |  |  |  |  | 0.97d | 0d | DUMP TRUCK [40 h]; EXCAVATOR [30 h]; LABOR [96 h]; DUMP TRUCK DRIVER [40 h]; EXCAVATOR OPERATOR [30 h]; PLUMBER [48 h]; MASON [48 h]; COST [50580] | 50,580 |  |
| TAEXSTCU120006 |  | Install Catch Basin with UPVC Pipes & Fittings | 12d | 2027-07-25 | 2027-08-08 | TAEXSTCU120005, TAEXSTCU330006 |  |  |  |  | 0.97d | 0d | EXCAVATOR [48 h]; LABOR [96 h]; EXCAVATOR OPERATOR [48 h]; PLUMBER [96 h]; COST [96500] | 96,500 |  |
| TAEXSTCU120007 |  | Leakage Test | 4d | 2027-08-08 | 2027-08-12 | TAEXSTCU120005, TAEXSTCU120006 |  |  |  |  | 0.97d | 0d | WATER TANKER [32 h]; LABOR [32 h]; WATER TANKER DRIVER [32 h]; PLUMBER [32 h]; COST [15600] | 15,600 |  |
|  | 11 | **Upgrade Local 14** |  | 2026-07-31 | 2027-09-15 |  |  |  |  |  |  |  |  |  |  |
|  | 21 | **Electrical Works** |  | 2026-07-31 | 2027-09-15 |  |  |  |  |  |  |  |  |  |  |
| TAEXELCU140001 |  | Trench Cut off | 10d | 2026-07-31 A | 2027-07-27 | TAEXELCU290001 | 29% | 7.1d | 2027-06-06 | 2027-06-17 | -29.3d | 0d | DUMP TRUCK [160 h]; EXCAVATOR [80 h]; LABOR [40 h]; DUMP TRUCK DRIVER [160 h]; EXCAVATOR OPERATOR [80 h]; COST [10530] | 10,530 | 3,053.7 |
| TAEXELCU140005 |  | Cables Pulling | 4d | 2026-08-02 A | 2027-08-22 | TAEXELCU140002, TAEXELCU140003, TAEXELCU140004 | 29% | 2.84d | 2027-07-06 | 2027-07-11 | -6.09d | 20.72d | ELECTRACIAN [120 h]; LABOR [160 h]; COST [224000] | 224,000 | 64,960 |
| TAEXELCU140002 |  | Drawpit and PVC Pipes Installation | 6d | 2027-07-27 | 2027-08-03 | TAEXELCU140001, TAPQDVEL0005 |  |  |  |  | -11.25d | 0d | ELECTRACIAN [80 h]; EXCAVATOR [40 h]; LABOR [80 h]; EXCAVATOR OPERATOR [40 h]; COST [7000] | 7,000 |  |
| TAEXELCU140003 |  | Road Crossing Ducts | 3d | 2027-08-03 | 2027-08-07 | TAEXELCU140002 |  |  |  |  | -6.09d | 0d | DUMP TRUCK [40 h]; EXCAVATOR [40 h]; DUMP TRUCK DRIVER [40 h]; EXCAVATOR OPERATOR [40 h]; COST [350] | 350 |  |
| TAEXELCU140006 |  | Poles RC Foundation | 4d | 2027-08-03 | 2027-08-08 | TAEXELCU140002, TAPQDVEL0005 |  |  |  |  | -11.25d | 0d | EXCAVATOR [40 h]; LABOR [40 h]; EXCAVATOR OPERATOR [40 h]; COST [12500] | 12,500 |  |
| TAEXELCU140004 |  | Trench Backfilling | 10d | 2027-08-07 | 2027-08-18 | TAEXELCU140003 |  |  |  |  | -6.09d | 0d | DUMP TRUCK [120 h]; WATER TANKER [40 h]; EXCAVATOR [60 h]; LABOR [60 h]; DUMP TRUCK DRIVER [120 h]; WATER TANKER DRIVER [40 h]; EXCAVATOR OPERATOR [60 h]; COMPACTOR [70 h]; COST [10200] | 10,200 |  |
| TAEXELCU140008 |  | Lighting Pole Installation with Luminares | 6d | 2027-08-08 | 2027-08-15 | TAEXELCU140006 |  |  |  |  | -11.25d | 18.05d | ELECTRACIAN [40 h]; CRANE [40 h]; CRANE OPERATOR [40 h]; COST [122050] | 122,050 |  |
| TAEXELCU140007 |  | Earthing cables | 2d | 2027-09-13 | 2027-09-15 | TAEXELCU140006, TAEXELCU140005, TAEXELCU120007 |  |  |  |  | -26.81d | 0d | ELECTRACIAN [80 h]; LABOR [40 h]; COST [2320] | 2,320 |  |

| ID | WBS | Activity | Duration | Start | Finish | Predecessors | Complete | Remaining | Planned start | Planned finish | Total float | Free float | Resources | Cost | Actual cost |
| --- | --- | --- | --- | --- | --- | --- | --- | --- | --- | --- | --- | --- | --- | --- | --- |
|  | 22 | **CCTV Works** |  | 2027-06-27 | 2027-08-09 |  |  |  |  |  |  |  |  |  |  |
| TAEXCCCU140001 |  | Pipe Installation with manhole | 7d | 2027-06-27 | 2027-07-05 | TAEXCCCU290001 |  |  |  |  | -14.55d | 0d | ELECTRACIAN [96 h]; LABOR [192 h]; COST [23773] | 23,773 |  |
| TAEXCCCU140002 |  | CCTV Swiches Lighting panels Installation | 12d | 2027-07-05 | 2027-07-19 | TAEXCCCU140001 |  |  |  |  | -14.55d | 0d | ELECTRACIAN [330 h]; EXCAVATOR [40 h]; LABOR [330 h]; EXCAVATOR OPERATOR [40 h]; COST [2515] | 2,515 |  |
| TAEXCCCU140003 |  | Cable laying and connected with Panels | 8d | 2027-07-19 | 2027-07-28 | TAEXCCCU140002 |  |  |  |  | 2.45d | 0d | ELECTRACIAN [160 h]; LABOR [320 h]; COST [19654] | 19,654 |  |
| TAEXCCCU140004 |  | Pole Installation with IP Outdoor CCTV POE Camera | 10d | 2027-07-28 | 2027-08-09 | TAEXCCCU140003 |  |  |  |  | 2.45d | 18.72d | ELECTRACIAN [80 h]; EXCAVATOR [60 h]; LABOR [80 h]; EXCAVATOR OPERATOR [60 h]; COST [6446] | 6,446 |  |
|  | 12 | **Upgrade Local 18** |  | 2027-07-15 | 2027-08-18 |  |  |  |  |  |  |  |  |  |  |
|  | 27 | **CCTV Works** |  | 2027-07-15 | 2027-08-18 |  |  |  |  |  |  |  |  |  |  |
| TAEXCCCU180001 |  | Pipe Installation with manhole | 8d | 2027-07-15 | 2027-07-25 | TAEXCCCU090001 SS |  |  |  |  | -5.55d | 0d | ELECTRACIAN [96 h]; LABOR [192 h]; COST [23144] | 23,144 |  |
| TAEXCCCU180002 |  | CCTV Swiches Lighting panels Installation | 9d | 2027-07-25 | 2027-08-04 | TAEXCCCU180001 |  |  |  |  | -5.55d | 0d | ELECTRACIAN [160 h]; EXCAVATOR [40 h]; LABOR [160 h]; EXCAVATOR OPERATOR [40 h]; COST [2515] | 2,515 |  |
| TAEXCCCU180003 |  | Cable laying and connected with Panels | 7d | 2027-08-04 | 2027-08-12 | TAEXCCCU180002 |  |  |  |  | -5.55d | 0d | ELECTRACIAN [148 h]; LABOR [148 h]; COST [19654] | 19,654 |  |
| TAEXCCCU180004 |  | Pole Installation with IP Outdoor CCTV POE Camera | 5d | 2027-08-12 | 2027-08-18 | TAEXCCCU180003 |  |  |  |  | -5.55d | 10.72d | ELECTRACIAN [80 h]; EXCAVATOR [56 h]; LABOR [80 h]; EXCAVATOR OPERATOR [56 h]; COST [6446] | 6,446 |  |
|  | 13 | **Upgrade Local 20** |  | 2026-08-08 | 2027-09-20 |  |  |  |  |  |  |  |  |  |  |
|  | 16 | **Electrical Works** |  | 2026-08-08 | 2027-09-20 |  |  |  |  |  |  |  |  |  |  |
| TAEXELCU200001 |  | Trench Cut off | 11d | 2026-08-08 A | 2027-04-01 | TAEXELCL050001 | 50% | 5.5d | 2027-02-01 | 2027-02-14 | -29.3d | 0d | DUMP TRUCK [160 h]; EXCAVATOR [88 h]; LABOR [44 h]; DUMP TRUCK DRIVER [160 h]; EXCAVATOR OPERATOR [88 h]; COST [11250] | 11,250 | 5,625 |
| TAEXELCU200005 |  | Cables Pulling | 4d | 2026-08-16 A | 2027-05-09 | TAEXELCU200002, TAEXELCU200003, TAEXELCU200004 | 59% | 1.64d | 2027-04-18 | 2027-04-22 | 70.26d | 0d | ELECTRACIAN [120 h]; LABOR [160 h]; COST [124000] | 124,000 | 73,160 |
| TAEXELCU200004 |  | Trench Backfilling | 14d | 2026-08-23 A | 2027-05-08 | TAEXELCU200003 | 44% | 7.84d | 2027-04-08 | 2027-04-25 | 70.26d | 0d | DUMP TRUCK [160 h]; WATER TANKER [144 h]; EXCAVATOR [160 h]; LABOR [160 h]; DUMP TRUCK DRIVER [160 h]; WATER TANKER DRIVER [144 h]; EXCAVATOR OPERATOR [160 h]; COMPACTOR [144 h]; COST [51320] | 51,320 | 22,580.8 |
| TAEXELCU200002 |  | Drawpit and PVC Pipes Installation | 9d | 2026-08-29 A | 2027-04-24 | TAEXELCU200001, TAPQDVEL0005 | 13% | 7.83d | 2027-03-31 | 2027-04-11 | 69.22d | 0d | ELECTRACIAN [80 h]; EXCAVATOR [40 h]; LABOR [80 h]; EXCAVATOR OPERATOR [40 h]; COST [29850] | 29,850 | 3,880.5 |
| TAEXELCU200003 |  | Road Crossing Ducts | 4d | 2026-08-29 A | 2027-04-28 | TAEXELCU200002 | 13% | 3.48d | 2027-04-11 | 2027-04-15 | 70.26d | 0d | DUMP TRUCK [120 h]; EXCAVATOR [60 h]; DUMP TRUCK DRIVER [120 h]; EXCAVATOR OPERATOR [60 h]; COST [50450] | 50,450 | 6,558.5 |
| TAEXELCU200006 |  | Poles RC Foundation | 7d | 2027-04-24 | 2027-05-02 | TAEXELCU200002, TAPQDVEL0005 |  |  |  |  | 69.22d | 0d | EXCAVATOR [80 h]; LABOR [120 h]; EXCAVATOR OPERATOR [80 h]; COST [102153] | 102,153 |  |
| TAEXELCU200008 |  | Lighting Pole Installation with Luminares | 9d | 2027-05-02 | 2027-05-12 | TAEXELCU200006 |  |  |  |  | 69.22d | 98.52d | ELECTRACIAN [220 h]; CRANE [76 h]; CRANE OPERATOR [76 h]; COST [51350] | 51,350 |  |
| TAEXELCU200009 |  | Install Substation & RMU | 9d | 2027-05-09 | 2027-05-19 | TAEXELCU200005, TAPQDVEL0004 |  |  |  |  | 70.26d | 99.56d | ELECTRACIAN [320 h]; CRANE [80 h]; CRANE OPERATOR [80 h]; COST [180000] | 180,000 |  |
| TAEXELCU200007 |  | Earthing cables | 4d | 2027-09-15 | 2027-09-20 | TAEXELCU200006, TAEXELCU140007 |  |  |  |  | -26.81d | 0d | ELECTRACIAN [80 h]; LABOR [40 h]; COST [4523] | 4,523 |  |
|  | 14 | **CCTV Works** |  | 2027-03-09 | 2027-08-29 |  |  |  |  |  |  |  |  |  |  |
| TAEXCCCU200001 |  | Pipe Installation with manhole | 10d | 2027-03-09 | 2027-03-21 | TAEXCCCC020001 |  |  |  |  | -14.55d | 0d | ELECTRACIAN [96 h]; LABOR [192 h]; COST [24591] | 24,591 |  |
| TAEXCCCU200002 |  | CCTV Swiches Lighting panels Installation | 13d | 2027-07-19 | 2027-08-03 | TAEXCCCU200001, TAEXCCCU140002 |  |  |  |  | -14.55d | 0d | ELECTRACIAN [330 h]; EXCAVATOR [40 h]; LABOR [330 h]; EXCAVATOR OPERATOR [40 h]; COST [2578] | 2,578 |  |
| TAEXCCCU200003 |  | Cable laying and connected with Panels | 10d | 2027-08-03 | 2027-08-15 | TAEXCCCU200002 |  |  |  |  | -14.55d | 0d | ELECTRACIAN [160 h]; LABOR [320 h]; COST [18176] | 18,176 |  |
| TAEXCCCU200004 |  | Pole Installation with IP Outdoor CCTV POE Camera | 12d | 2027-08-15 | 2027-08-29 | TAEXCCCU200003 |  |  |  |  | -14.55d | 1.72d | ELECTRACIAN [192 h]; EXCAVATOR [96 h]; LABOR [192 h]; EXCAVATOR OPERATOR [96 h]; COST [3918] | 3,918 |  |

| ID | WBS | Activity | Duration | Start | Finish | Predecessors | Total float | Free float | Resources | Cost |
| --- | --- | --- | --- | --- | --- | --- | --- | --- | --- | --- |
|  | 1 | **Potable Networks** |  | 2026-10-19 | 2027-01-14 |  |  |  |  |  |
| TAEXPTCU200007 |  | Valve Chamber works | 17d | 2026-10-19 | 2026-11-07 | TAEXPTCL0500071 | 117.9d | 0d | WATER TANKER [24 h]; EXCAVATOR [32 h]; CONCRET MIXER [28 h]; LABOR [60 h]; WATER TANKER DRIVER [24 h]; EXCAVATOR OPERATOR [32 h]; PLUMBER [32 h]; STEEL FIXER [32 h]; CARPENTER [32 h]; MASON [32 h]; CONCRET MIXER OPERATOR [28 h]; COST [22500] | 22,500 |
| TAEXPTCU200008 |  | Inspection Test | 5d | 2026-11-08 | 2026-11-12 | TAEXPTCU200007 | 227d | 164.96d | WATER TANKER [40 h]; LABOR [64 h]; WATER TANKER DRIVER [40 h]; PLUMBER [40 h]; COST [5100] | 5,100 |
| TAEXPTCU200001 |  | Excavation works for Trench | 9d | 2026-11-28 | 2026-12-08 | TAEXPTCU120001 | 62.04d | 0d | DUMP TRUCK [130 h]; EXCAVATOR [70 h]; LABOR [20 h]; DUMP TRUCK DRIVER [130 h]; EXCAVATOR OPERATOR [70 h]; COST [30350] | 30,350 |
| TAEXPTCU200002 |  | Bedding Works | 2d | 2026-12-08 | 2026-12-10 | TAEXPTCU200001 | 63.04d | 0d | DUMP TRUCK [16 h]; EXCAVATOR [16 h]; LABOR [32 h]; DUMP TRUCK DRIVER [16 h]; EXCAVATOR OPERATOR [16 h]; COST [7050] | 7,050 |
| TAEXPTCU200003 |  | Install Pipes & Fittings | 8d | 2026-12-10 | 2026-12-20 | TAEXPTCU200002, TAEXPTCL050003 | 63.04d | 0d | LABOR [128 h]; PLUMBER [64 h]; COST [78112] | 78,112 |
| TAEXPTCU200004 |  | Backfilling Works for Trench | 16d | 2026-12-20 | 2027-01-07 | TAEXPTCU200003 | 168.14d | 0d | DUMP TRUCK [60 h]; WATER TANKER [24 h]; EXCAVATOR [30 h]; LABOR [60 h]; DUMP TRUCK DRIVER [60 h]; WATER TANKER DRIVER [24 h]; EXCAVATOR OPERATOR [30 h]; COMPACTOR [32 h]; COST [24100] | 24,100 |
| TAEXPTCU200005 |  | Install Valves with fittings | 4d | 2027-01-03 | 2027-01-07 | TAEXPTCU200004 FF, TAPQDVPT00021 | 168.14d | 0d | LABOR [64 h]; PLUMBER [64 h]; COST [9600] | 9,600 |
| TAEXPTCU200006 |  | Install fire hydrent | 6d | 2027-01-07 | 2027-01-14 | TAEXPTCU200003, TAEXPTCU200005 | 168.14d | 0d | LABOR [96 h]; PLUMBER [48 h]; COST [24000] | 24,000 |
|  | 2 | **TSE Networks** |  | 2027-02-14 | 2027-05-04 |  |  |  |  |  |
| TAEXTSCU200001 |  | Excavation works for Trench | 20d | 2027-02-14 | 2027-03-09 | TAEXTSCU120001 | 51.42d | 0d | DUMP TRUCK [144 h]; EXCAVATOR [72 h]; LABOR [30 h]; DUMP TRUCK DRIVER [144 h]; EXCAVATOR OPERATOR [72 h]; COST [30150] | 30,150 |
| TAEXTSCU200002 |  | Bedding Works | 2d | 2027-03-09 | 2027-03-11 | TAEXTSCU200001 | 68.42d | 0d | DUMP TRUCK [16 h]; EXCAVATOR [16 h]; LABOR [32 h]; DUMP TRUCK DRIVER [16 h]; EXCAVATOR OPERATOR [16 h]; COST [3800] | 3,800 |
| TAEXTSCU200003 |  | Install Pipes & Fittings | 8d | 2027-03-11 | 2027-03-21 | TAEXTSCU200002, TAEXTSCL050003, TAEXTSCL050003 FF | 68.42d | 0d | LABOR [128 h]; PLUMBER [128 h]; COST [72300] | 72,300 |
| TAEXTSCU200004 |  | Backfilling Works for Trench | 16d | 2027-03-21 | 2027-04-08 | TAEXTSCU200003 | 79.92d | 0d | DUMP TRUCK [60 h]; WATER TANKER [24 h]; EXCAVATOR [32 h]; LABOR [60 h]; DUMP TRUCK DRIVER [60 h]; WATER TANKER DRIVER [24 h]; EXCAVATOR OPERATOR [32 h]; COMPACTOR [32 h]; COST [26300] | 26,300 |
| TAEXTSCU200005 |  | Install Valves with fittings | 4d | 2027-04-04 | 2027-04-08 | TAEXTSCU200004 FF | 79.92d | 0d | LABOR [64 h]; PLUMBER [64 h]; COST [6320] | 6,320 |
| TAEXTSCU200006 |  | Valve Chamber works | 17d | 2027-04-08 | 2027-04-28 | TAEXTSCU200005 | 79.92d | 0d | WATER TANKER [70 h]; EXCAVATOR [70 h]; CONCRET MIXER [72 h]; LABOR [140 h]; WATER TANKER DRIVER [70 h]; EXCAVATOR OPERATOR [70 h]; PLUMBER [140 h]; STEEL FIXER [140 h]; CARPENTER [140 h]; MASON [140 h]; CONCRET MIXER OPERATOR [72 h]; COST [44300] | 44,300 |
| TAEXTSCU200007 |  | Inspection Test | 5d | 2027-04-28 | 2027-05-04 | TAEXTSCU200006 | 79.92d | 28.5d | WATER TANKER [40 h]; LABOR [64 h]; WATER TANKER DRIVER [40 h]; PLUMBER [64 h]; COST [4200] | 4,200 |
|  | 3 | **Sewerage Networks** |  | 2026-11-30 | 2027-02-07 |  |  |  |  |  |
| TAEXSWCU200001 |  | Excavation works for Trench | 15d | 2026-11-30 | 2026-12-17 | TAEXSWCU120001 | 131.68d | 0d | DUMP TRUCK [240 h]; EXCAVATOR [120 h]; LABOR [60 h]; DUMP TRUCK DRIVER [240 h]; EXCAVATOR OPERATOR [120 h]; COST [58630] | 58,630 |
| TAEXSWCU200002 |  | Bedding Works | 3d | 2026-12-17 | 2026-12-21 | TAEXSWCU200001 | 148.68d | 0d | DUMP TRUCK [16 h]; EXCAVATOR [16 h]; LABOR [48 h]; DUMP TRUCK DRIVER [16 h]; EXCAVATOR OPERATOR [16 h]; COST [6850] | 6,850 |
| TAEXSWCU200003 |  | Install GRP Pipes & Fittings | 12d | 2026-12-21 | 2027-01-04 | TAEXSWCU200002 | 148.68d | 0d | EXCAVATOR [96 h]; LABOR [192 h]; EXCAVATOR OPERATOR [96 h]; PLUMBER [96 h]; COST [55210] | 55,210 |
| TAEXSWCU200004 |  | Backfilling Works for Trench | 17d | 2027-01-02 | 2027-01-21 | TAEXSWCU200003 FF+15d | 148.68d | 0d | DUMP TRUCK [272 h]; WATER TANKER [136 h]; EXCAVATOR [136 h]; LABOR [136 h]; DUMP TRUCK DRIVER [272 h]; WATER TANKER DRIVER [136 h]; EXCAVATOR OPERATOR [136 h]; COMPACTOR [136 h]; COST [22480] | 22,480 |
| TAEXSWCU200005 |  | Manhole Installation with backfilling | 16d | 2027-01-14 | 2027-02-02 | TAEXSWCU200004 FF+10d, TAEXSWCU200003, TAPQDVSW00021 | 148.68d | 0d | DUMP TRUCK [128 h]; EXCAVATOR [128 h]; LABOR [256 h]; DUMP TRUCK DRIVER [128 h]; EXCAVATOR OPERATOR [128 h]; PLUMBER [128 h]; MASON [32 h]; COST [68600] | 68,600 |
| TAEXSWCU200006 |  | Leakage Test | 4d | 2027-02-02 | 2027-02-07 | TAEXSWCU200005 | 148.68d | 25.97d | WATER TANKER [32 h]; LABOR [64 h]; WATER TANKER DRIVER [32 h]; PLUMBER [32 h]; COST [5600] | 5,600 |

| ID | WBS | Activity | Duration | Start | Finish | Predecessors | Complete | Planned start | Planned finish | Total float | Free float | Resources | Cost | Actual cost |
| --- | --- | --- | --- | --- | --- | --- | --- | --- | --- | --- | --- | --- | --- | --- |
|  | 14 | **Upgrade Local 29** |  | 2026-07-05 | 2027-09-22 |  |  |  |  |  |  |  |  |  |
|  | 25 | **Road Works** |  | 2026-07-25 | 2027-05-22 |  |  |  |  |  |  |  |  |  |
| TAEXRDCU290001 |  | Asphalt Milling and Deisposal | 4d | 2026-07-25 A | 2026-07-26 A | TAEXRDCL080000 | 100% | 2027-02-23 | 2027-02-28 |  |  | DUMP TRUCK [64 h]; MILLING MACHINE [64 h]; DUMP TRUCK DRIVER [64 h]; MILLING MACHINE OPERATOR [64 h]; COST [99400] | 99,400 | 99,400 |
| TAEXRDCU290002 |  | MBC1 layer | 1d | 2027-03-07 | 2027-03-08 | TAEXRDCU290001 |  |  |  | 28.96d | 0d | MC1 sprinker [8 h]; MC DRIVER [8 h]; COST [9832] | 9,832 |  |
| TAEXRDCU290003 |  | BBC Base Course | 4d | 2027-03-08 | 2027-03-13 | TAEXRDCU290002 |  |  |  | 28.96d | 0d | ROLEER [48 h]; DUMP TRUCK [72 h]; MILLING MACHINE [24 h]; WHEEL ROLLER [48 h]; LABOR [100 h]; DUMP TRUCK DRIVER [72 h]; MILLING MACHINE OPERATOR [24 h]; WHEEL ROLLER OPERATOR [48 h]; ROLLER OPERATOR [48 h]; COST [469343] | 469,343 |  |
| TAEXRDCU290005 |  | Precast Concret Kerps | 10d | 2027-03-13 | 2027-03-24 | TAEXRDCU290003 |  |  |  | 28.96d | 0d | LABOR [320 h]; COST [185870] | 185,870 |  |
| TAEXRDCU290004 |  | BWC Asphalt Wearing Course with RC | 3d | 2027-03-24 | 2027-03-28 | TAEXRDCU290003, TAEXRDCU290005 |  |  |  | 62.96d | 0d | ROLEER [16 h]; DUMP TRUCK [32 h]; MILLING MACHINE [8 h]; WHEEL ROLLER [16 h]; LABOR [40 h]; DUMP TRUCK DRIVER [32 h]; MILLING MACHINE OPERATOR [8 h]; WHEEL ROLLER OPERATOR [16 h]; ROLLER OPERATOR [16 h]; COST [209377] | 209,377 |  |
| TAEXRDCU290006 |  | Precast Interlock Works | 8d | 2027-05-08 | 2027-05-17 | TAEXRDCU290005, TAEXRDCU290004 FS+35d |  |  |  | 62.96d | 0d | LABOR [260 h]; COST [168704] | 168,704 |  |
| TAEXRDCU290007 |  | Stone Paving works | 2d | 2027-05-17 | 2027-05-19 | TAEXRDCU290006 |  |  |  | 62.96d | 0d | DUMP TRUCK [32 h]; LABOR [160 h]; DUMP TRUCK DRIVER [32 h]; COST [21000] | 21,000 |  |
| TAEXRDCU290008 |  | Road Marking | 1d | 2027-05-19 | 2027-05-20 | TAEXRDCU290007 |  |  |  | 62.96d | 0d | LABOR [32 h]; COST [4100] | 4,100 |  |
| TAEXRDCU290009 |  | Traffic Sinage | 1d | 2027-05-20 | 2027-05-22 | TAEXRDCU290008 |  |  |  | 62.96d | 61.12d | EXCAVATOR [8 h]; LABOR [32 h]; EXCAVATOR OPERATOR [8 h]; COST [33450] | 33,450 |  |
|  | 20 | **Electrical Works** |  | 2027-07-07 | 2027-09-22 |  |  |  |  |  |  |  |  |  |
| TAEXELCU290001 |  | Trench Cut off | 10d | 2027-07-07 | 2027-07-19 | TAEXELCL090001 |  |  |  | -29.3d | 0d | DUMP TRUCK [160 h]; EXCAVATOR [80 h]; LABOR [40 h]; DUMP TRUCK DRIVER [160 h]; EXCAVATOR OPERATOR [80 h]; COST [10530] | 10,530 |  |
| TAEXELCU290002 |  | Drawpit and PVC Pipes Installation | 6d | 2027-07-19 | 2027-07-26 | TAEXELCU290001, TAPQDVEL0005 |  |  |  | -4.15d | 0d | ELECTRACIAN [80 h]; EXCAVATOR [40 h]; LABOR [80 h]; EXCAVATOR OPERATOR [40 h]; COST [7000] | 7,000 |  |
| TAEXELCU290003 |  | Road Crossing Ducts | 3d | 2027-07-26 | 2027-07-29 | TAEXELCU290002 |  |  |  | 5.85d | 0d | DUMP TRUCK [40 h]; EXCAVATOR [40 h]; DUMP TRUCK DRIVER [40 h]; EXCAVATOR OPERATOR [40 h]; COST [350] | 350 |  |
| TAEXELCU290006 |  | Poles RC Foundation | 4d | 2027-07-26 | 2027-07-31 | TAEXELCU290002, TAPQDVEL0005 |  |  |  | -4.15d | 0d | EXCAVATOR [40 h]; LABOR [40 h]; EXCAVATOR OPERATOR [40 h]; COST [12250] | 12,250 |  |
| TAEXELCU290004 |  | Trench Backfilling | 10d | 2027-07-29 | 2027-08-10 | TAEXELCU290003 |  |  |  | 5.85d | 0d | DUMP TRUCK [40 h]; WATER TANKER [15 h]; EXCAVATOR [20 h]; LABOR [40 h]; DUMP TRUCK DRIVER [40 h]; WATER TANKER DRIVER [15 h]; EXCAVATOR OPERATOR [20 h]; COMPACTOR [20 h]; COST [11250] | 11,250 |  |
| TAEXELCU290008 |  | Lighting Pole Installation with Luminares | 6d | 2027-07-31 | 2027-08-07 | TAEXELCU290006 |  |  |  | -4.15d | 25.15d | ELECTRACIAN [40 h]; CRANE [40 h]; CRANE OPERATOR [40 h]; COST [122050] | 122,050 |  |
| TAEXELCU290005 |  | Cables Pulling | 4d | 2027-08-10 | 2027-08-15 | TAEXELCU290002, TAEXELCU290003, TAEXELCU290004 |  |  |  | 5.85d | 32.66d | ELECTRACIAN [120 h]; LABOR [160 h]; COST [224000] | 224,000 |  |
| TAEXELCU290007 |  | Earthing cables | 2d | 2027-09-20 | 2027-09-22 | TAEXELCU290006, TAEXELCU290005, TAEXELCU200007 |  |  |  | -26.81d | 0d | ELECTRACIAN [80 h]; LABOR [40 h]; COST [2320] | 2,320 |  |
|  | 1 | **Telecommunication Works** |  | 2027-06-26 | 2027-08-05 |  |  |  |  |  |  |  |  |  |
| TAEXTCCU290001 |  | Trench Cut off | 10d | 2027-06-26 | 2027-07-07 | TAEXTCCL090001 |  |  |  | -14.61d | 5.66d | DUMP TRUCK [140 h]; EXCAVATOR [80 h]; LABOR [40 h]; DUMP TRUCK DRIVER [140 h]; EXCAVATOR OPERATOR [80 h]; COST [15230] | 15,230 |  |
| TAEXTCCU290002 |  | Drawpit and PVC Pipes Installation | 6d | 2027-07-14 | 2027-07-21 | TAEXTCCU290001, TAEXTCCU120002 |  |  |  | -20.27d | 0d | ELECTRACIAN [80 h]; EXCAVATOR [40 h]; LABOR [24 h]; EXCAVATOR OPERATOR [40 h]; COST [22250] | 22,250 |  |
| TAEXTCCU290003 |  | Road Crossing Ducts | 3d | 2027-07-21 | 2027-07-25 | TAEXTCCU290002 |  |  |  | -4.27d | 0d | DUMP TRUCK [40 h]; EXCAVATOR [24 h]; DUMP TRUCK DRIVER [40 h]; EXCAVATOR OPERATOR [24 h]; COST [10500] | 10,500 |  |
| TAEXTCCU290004 |  | Trench Backfilling | 10d | 2027-07-25 | 2027-08-05 | TAEXTCCU290003 |  |  |  | -4.27d | 16d | DUMP TRUCK [140 h]; WATER TANKER [80 h]; EXCAVATOR [80 h]; LABOR [160 h]; DUMP TRUCK DRIVER [140 h]; WATER TANKER DRIVER [80 h]; EXCAVATOR OPERATOR [80 h]; COMPACTOR [80 h]; COST [26430] | 26,430 |  |

| ID | WBS | Activity | Duration | Start | Finish | Predecessors | Complete | Planned start | Planned finish | Total float | Free float | Resources | Cost | Actual cost |
| --- | --- | --- | --- | --- | --- | --- | --- | --- | --- | --- | --- | --- | --- | --- |
|  | 21 | **CCTV Works** |  | 2027-06-19 | 2027-07-31 |  |  |  |  |  |  |  |  |  |
| TAEXCCCU290001 |  | Pipe Installation with manhole | 7d | 2027-06-19 | 2027-06-27 | TAEXCCCL090001 |  |  |  | -14.55d | 0d | ELECTRACIAN [96 h]; LABOR [192 h]; COST [23144] | 23,144 |  |
| TAEXCCCU290002 |  | CCTV Swiches Lighting panels Installation | 10d | 2027-06-27 | 2027-07-08 | TAEXCCCU290001 |  |  |  | 0.45d | 0d | ELECTRACIAN [160 h]; EXCAVATOR [40 h]; LABOR [160 h]; EXCAVATOR OPERATOR [40 h]; COST [2515] | 2,515 |  |
| TAEXCCCU290003 |  | Cable laying and connected with Panels | 9d | 2027-07-08 | 2027-07-19 | TAEXCCCU290002 |  |  |  | 10.45d | 0d | ELECTRACIAN [148 h]; LABOR [148 h]; COST [19654] | 19,654 |  |
| TAEXCCCU290004 |  | Pole Installation with IP Outdoor CCTV POE Camera | 10d | 2027-07-19 | 2027-07-31 | TAEXCCCU290003 |  |  |  | 10.45d | 26.72d | ELECTRACIAN [80 h]; EXCAVATOR [60 h]; LABOR [80 h]; EXCAVATOR OPERATOR [60 h]; COST [6446] | 6,446 |  |
|  | 2 | **Potable Networks** |  | 2026-07-05 | 2027-06-05 |  |  |  |  |  |  |  |  |  |
| TAEXPTCU290001 |  | Excavation works for Trench | 4d | 2026-07-05 A | 2026-07-15 A | TAEXPTCU330001 | 100% | 2026-12-14 | 2026-12-19 |  |  | DUMP TRUCK [60 h]; EXCAVATOR [30 h]; LABOR [15 h]; DUMP TRUCK DRIVER [60 h]; EXCAVATOR OPERATOR [30 h]; COST [44350] | 44,350 | 44,350 |
| TAEXPTCU290002 |  | Bedding Works | 2d | 2026-07-15 A | 2026-07-16 A | TAEXPTCU290001 | 100% | 2026-12-16 | 2026-12-17 |  |  | DUMP TRUCK [16 h]; EXCAVATOR [16 h]; LABOR [32 h]; DUMP TRUCK DRIVER [16 h]; EXCAVATOR OPERATOR [16 h]; COST [7050] | 7,050 | 7,050 |
| TAEXPTCU290003 |  | Install Pipes & Fittings | 5d | 2026-07-16 A | 2026-07-29 A | TAEXPTCU290002, TAEXPTCL0900031 | 100% | 2026-12-19 | 2026-12-23 |  |  | LABOR [80 h]; PLUMBER [40 h]; COST [76300] | 76,300 | 76,300 |
| TAEXPTCU290004 |  | Backfilling Works for Trench | 12d | 2026-08-09 A | 2026-08-23 A | TAEXPTCU290003 | 100% | 2026-12-22 | 2027-01-05 |  |  | DUMP TRUCK [180 h]; WATER TANKER [90 h]; EXCAVATOR [90 h]; LABOR [45 h]; DUMP TRUCK DRIVER [180 h]; WATER TANKER DRIVER [90 h]; EXCAVATOR OPERATOR [90 h]; COMPACTOR [96 h]; COST [22150] | 22,150 | 22,150 |
| TAEXPTCU290005 |  | Install Valves with fittings | 4d | 2026-08-23 A | 2026-08-23 A | TAEXPTCU290004 FF, TAPQDVPT00021 | 100% | 2026-12-26 | 2026-12-30 |  |  | LABOR [64 h]; PLUMBER [64 h]; COST [9600] | 9,600 | 9,600 |
| TAEXPTCU290006 |  | Install fire hydrent | 5d | 2026-10-01 A | 2026-10-04 A | TAEXPTCU290003, TAEXPTCU290005, TAEXPTCU200006 | 100% | 2027-01-04 | 2027-01-10 |  |  | LABOR [80 h]; PLUMBER [40 h]; COST [22400] | 22,400 | 22,400 |
| TAEXPTCU290008 |  | Inspection Test | 3d | 2026-10-08 A | 2026-10-10 A | TAEXPTCU290007 | 100% | 2027-05-29 | 2027-06-01 |  |  | WATER TANKER [24 h]; LABOR [32 h]; WATER TANKER DRIVER [24 h]; PLUMBER [24 h]; COST [3200] | 3,200 | 3,200 |
| TAEXPTCU290007 |  | Valve Chamber works | 15d | 2027-05-18 | 2027-06-05 | TAEXPTCU290006, TAEXPTCL090007 |  |  |  | 62.04d | 0d | WATER TANKER [60 h]; EXCAVATOR [60 h]; CONCRET MIXER [60 h]; LABOR [120 h]; WATER TANKER DRIVER [60 h]; EXCAVATOR OPERATOR [60 h]; PLUMBER [120 h]; STEEL FIXER [120 h]; CARPENTER [120 h]; MASON [120 h]; CONCRET MIXER OPERATOR [60 h]; COST [22100] | 22,100 |  |
|  | 3 | **TSE Networks** |  | 2026-07-12 | 2027-04-25 |  |  |  |  |  |  |  |  |  |
| TAEXTSCU290001 |  | Excavation works for Trench | 4d | 2026-07-12 A | 2026-07-16 A | TAEXTSCU330001 | 100% | 2027-04-07 | 2027-04-12 |  |  | DUMP TRUCK [64 h]; EXCAVATOR [32 h]; LABOR [16 h]; DUMP TRUCK DRIVER [64 h]; EXCAVATOR OPERATOR [32 h]; COST [48360] | 48,360 | 48,360 |
| TAEXTSCU290002 |  | Bedding Works | 2d | 2026-07-25 A | 2026-07-26 A | TAEXTSCU290001 | 100% | 2027-04-10 | 2027-04-12 |  |  | DUMP TRUCK [16 h]; EXCAVATOR [16 h]; LABOR [32 h]; DUMP TRUCK DRIVER [16 h]; EXCAVATOR OPERATOR [16 h]; COST [4200] | 4,200 | 4,200 |
| TAEXTSCU290003 |  | Install Pipes & Fittings | 5d | 2026-07-26 A | 2026-08-02 A | TAEXTSCU290002, TAEXTSCL090003 | 100% | 2027-04-12 | 2027-04-18 |  |  | LABOR [80 h]; PLUMBER [80 h]; COST [60200] | 60,200 | 60,200 |
| TAEXTSCU290004 |  | Backfilling Works for Trench | 12d | 2026-08-09 A | 2026-08-23 A | TAEXTSCU290003 | 100% | 2027-04-12 | 2027-04-26 |  |  | DUMP TRUCK [200 h]; WATER TANKER [96 h]; EXCAVATOR [96 h]; LABOR [100 h]; DUMP TRUCK DRIVER [200 h]; WATER TANKER DRIVER [96 h]; EXCAVATOR OPERATOR [96 h]; COMPACTOR [128 h]; COST [20100] | 20,100 | 20,100 |
| TAEXTSCU290005 |  | Install Valves with fittings | 4d | 2026-08-23 A | 2026-08-23 A | TAEXTSCU290004 FF | 100% | 2027-03-18 | 2027-03-23 |  |  | LABOR [64 h]; PLUMBER [64 h]; COST [6320] | 6,320 | 6,320 |
| TAEXTSCU290007 |  | Inspection Test | 3d | 2026-10-08 A | 2026-10-10 A | TAEXTSCU290006 | 100% | 2027-04-18 | 2027-04-21 |  |  | WATER TANKER [24 h]; LABOR [64 h]; WATER TANKER DRIVER [24 h]; PLUMBER [64 h]; COST [3500] | 3,500 | 3,500 |
| TAEXTSCU290006 |  | Valve Chamber works | 15d | 2027-04-07 | 2027-04-25 | TAEXTSCU290005 |  |  |  | 87.92d | 0d | WATER TANKER [60 h]; EXCAVATOR [60 h]; CONCRET MIXER [60 h]; LABOR [120 h]; WATER TANKER DRIVER [60 h]; EXCAVATOR OPERATOR [60 h]; PLUMBER [120 h]; STEEL FIXER [120 h]; CARPENTER [120 h]; MASON [120 h]; CONCRET MIXER OPERATOR [60 h]; COST [38620] | 38,620 |  |
|  | 15 | **Upgrade Local 32** |  | 2026-08-11 | 2027-09-27 |  |  |  |  |  |  |  |  |  |
|  | 17 | **Electrical Works** |  | 2027-04-01 | 2027-09-27 |  |  |  |  |  |  |  |  |  |
| TAEXELCU320001 |  | Trench Cut off | 11d | 2027-04-01 | 2027-04-14 | TAEXELCU200001 |  |  |  | -29.3d | 0d | DUMP TRUCK [160 h]; EXCAVATOR [88 h]; LABOR [44 h]; DUMP TRUCK DRIVER [160 h]; EXCAVATOR OPERATOR [88 h]; COST [11250] | 11,250 |  |
| TAEXELCU320002 |  | Drawpit and PVC Pipes Installation | 4d | 2027-04-14 | 2027-04-19 | TAEXELCU320001, TAPQDVEL0005 |  |  |  | 73.05d | 0d | ELECTRACIAN [80 h]; EXCAVATOR [40 h]; LABOR [80 h]; EXCAVATOR OPERATOR [40 h]; COST [329850] | 329,850 |  |
| TAEXELCU320003 |  | Road Crossing Ducts | 12d | 2027-04-19 | 2027-05-03 | TAEXELCU320002 |  |  |  | 76.05d | 0d | DUMP TRUCK [64 h]; EXCAVATOR [64 h]; DUMP TRUCK DRIVER [64 h]; EXCAVATOR OPERATOR [64 h]; COST [55450] | 55,450 |  |
| TAEXELCU320006 |  | Poles RC Foundation | 7d | 2027-04-19 | 2027-04-27 | TAEXELCU320002, TAPQDVEL0005 |  |  |  | 73.05d | 0d | EXCAVATOR [56 h]; LABOR [120 h]; EXCAVATOR OPERATOR [56 h]; COST [21520] | 21,520 |  |
| TAEXELCU320008 |  | Lighting Pole Installation with Luminares | 9d | 2027-04-27 | 2027-05-08 | TAEXELCU320006 |  |  |  | 73.05d | 102.35d | ELECTRACIAN [148 h]; CRANE [80 h]; CRANE OPERATOR [80 h]; COST [71350] | 71,350 |  |
| TAEXELCU320004 |  | Trench Backfilling | 16d | 2027-05-03 | 2027-05-22 | TAEXELCU320003 |  |  |  | 76.05d | 0d | DUMP TRUCK [160 h]; WATER TANKER [144 h]; EXCAVATOR [160 h]; LABOR [160 h]; DUMP TRUCK DRIVER [160 h]; WATER TANKER DRIVER [144 h]; EXCAVATOR OPERATOR [160 h]; COMPACTOR [144 h]; COST [10235] | 10,235 |  |
| TAEXELCU320005 |  | Cables Pulling | 4d | 2027-05-22 | 2027-05-26 | TAEXELCU320002, TAEXELCU320003, TAEXELCU320004 |  |  |  | 76.05d | 102.86d | ELECTRACIAN [120 h]; LABOR [160 h]; COST [224000] | 224,000 |  |
| TAEXELCU320007 |  | Earthing cables | 4d | 2027-09-22 | 2027-09-27 | TAEXELCU320006, TAEXELCU320005, TAEXELCU290007 |  |  |  | -26.81d | 0d | ELECTRACIAN [80 h]; LABOR [40 h]; COST [4523] | 4,523 |  |

| ID | WBS | Activity | Duration | Start | Finish | Predecessors | Complete | Remaining | Planned start | Planned finish | Total float | Free float | Resources | Cost | Actual cost |
| --- | --- | --- | --- | --- | --- | --- | --- | --- | --- | --- | --- | --- | --- | --- | --- |
|  | 4 | **Telecommunication Works** |  | 2027-03-21 | 2027-08-31 |  |  |  |  |  |  |  |  |  |  |
| TAEXCCCU320001 |  | Pipe Installation with manhole | 10d | 2027-03-21 | 2027-04-01 | TAEXCCCU200001 |  |  |  |  | -14.55d | 0d | ELECTRACIAN [96 h]; LABOR [192 h]; COST [24591] | 24,591 |  |
| TAEXCCCU320002 |  | CCTV Swiches Lighting panels Installation | 13d | 2027-07-21 | 2027-08-05 | TAEXCCCU320001, TAEXTCCU290002 |  |  |  |  | -20.27d | 0d | ELECTRACIAN [330 h]; EXCAVATOR [40 h]; LABOR [330 h]; EXCAVATOR OPERATOR [40 h]; COST [2578] | 2,578 |  |
| TAEXCCCU320003 |  | Cable laying and connected with Panels | 10d | 2027-08-05 | 2027-08-17 | TAEXCCCU320002 |  |  |  |  | -16.27d | 0d | ELECTRACIAN [160 h]; LABOR [320 h]; COST [18176] | 18,176 |  |
| TAEXCCCU320004 |  | Pole Installation with IP Outdoor CCTV POE Camera | 12d | 2027-08-17 | 2027-08-31 | TAEXCCCU320003 |  |  |  |  | -16.27d | 0d | ELECTRACIAN [192 h]; EXCAVATOR [96 h]; LABOR [192 h]; EXCAVATOR OPERATOR [96 h]; COST [3918] | 3,918 |  |
|  | 16 | **Potable Networks** |  | 2026-11-08 | 2027-01-25 |  |  |  |  |  |  |  |  |  |  |
| TAEXPTCU320007 |  | Valve Chamber works | 17d | 2026-11-08 | 2026-11-26 | TAEXPTCU200007 |  |  |  |  | 117.9d | 0d | WATER TANKER [32 h]; EXCAVATOR [24 h]; CONCRET MIXER [28 h]; LABOR [72 h]; WATER TANKER DRIVER [32 h]; EXCAVATOR OPERATOR [24 h]; PLUMBER [48 h]; STEEL FIXER [48 h]; CARPENTER [40 h]; MASON [48 h]; CONCRET MIXER OPERATOR [28 h]; COST [42500] | 42,500 |  |
| TAEXPTCU320008 |  | Inspection Test | 5d | 2026-11-28 | 2026-12-02 | TAEXPTCU320007 |  |  |  |  | 205d | 125.08d | WATER TANKER [40 h]; LABOR [64 h]; WATER TANKER DRIVER [40 h]; PLUMBER [40 h]; COST [5100] | 5,100 |  |
| TAEXPTCU320001 |  | Excavation works for Trench | 9d | 2026-12-08 | 2026-12-19 | TAEXPTCU200001 |  |  |  |  | 62.04d | 0d | DUMP TRUCK [620 h]; EXCAVATOR [72 h]; LABOR [20 h]; DUMP TRUCK DRIVER [620 h]; EXCAVATOR OPERATOR [72 h]; COST [60350] | 60,350 |  |
| TAEXPTCU320002 |  | Bedding Works | 2d | 2026-12-19 | 2026-12-21 | TAEXPTCU320001 |  |  |  |  | 62.04d | 0d | DUMP TRUCK [16 h]; EXCAVATOR [16 h]; LABOR [32 h]; DUMP TRUCK DRIVER [16 h]; EXCAVATOR OPERATOR [16 h]; COST [7050] | 7,050 |  |
| TAEXPTCU320003 |  | Install Pipes & Fittings | 8d | 2026-12-21 | 2026-12-30 | TAEXPTCU320002, TAEXPTCU200003 |  |  |  |  | 62.04d | 0d | LABOR [128 h]; PLUMBER [64 h]; COST [78112] | 78,112 |  |
| TAEXPTCU320004 |  | Backfilling Works for Trench | 16d | 2026-12-30 | 2027-01-18 | TAEXPTCU320003 |  |  |  |  | 62.04d | 0d | DUMP TRUCK [256 h]; WATER TANKER [80 h]; EXCAVATOR [120 h]; LABOR [80 h]; DUMP TRUCK DRIVER [256 h]; WATER TANKER DRIVER [80 h]; EXCAVATOR OPERATOR [120 h]; COMPACTOR [128 h]; COST [24100] | 24,100 |  |
| TAEXPTCU320005 |  | Install Valves with fittings | 4d | 2027-01-13 | 2027-01-18 | TAEXPTCU320004 FF, TAPQDVPT00021 |  |  |  |  | 62.04d | 0d | LABOR [64 h]; PLUMBER [64 h]; COST [9600] | 9,600 |  |
| TAEXPTCU320006 |  | Install fire hydrent | 6d | 2027-01-18 | 2027-01-25 | TAEXPTCU320003, TAEXPTCU320005 |  |  |  |  | 62.04d | 0d | LABOR [96 h]; PLUMBER [48 h]; COST [24000] | 24,000 |  |
|  | 1 | **TSE Networks** |  | 2026-08-11 | 2027-05-04 |  |  |  |  |  |  |  |  |  |  |
| TAEXTSCU320001 |  | Excavation works for Trench | 20d | 2026-08-11 A | 2026-08-11 A | TAEXTSCU200001 | 100% |  | 2027-02-18 | 2027-03-14 |  |  | DUMP TRUCK [144 h]; EXCAVATOR [72 h]; LABOR [30 h]; DUMP TRUCK DRIVER [144 h]; EXCAVATOR OPERATOR [72 h]; COST [30150] | 30,150 | 30,150 |
| TAEXTSCU320002 |  | Bedding Works | 2d | 2026-08-16 A | 2026-08-23 A | TAEXTSCU320001 | 100% |  | 2027-02-25 | 2027-02-28 |  |  | DUMP TRUCK [16 h]; EXCAVATOR [16 h]; LABOR [32 h]; DUMP TRUCK DRIVER [16 h]; EXCAVATOR OPERATOR [16 h]; COST [4500] | 4,500 | 4,500 |
| TAEXTSCU320003 |  | Install Pipes & Fittings | 8d | 2026-08-16 A | 2026-08-23 A | TAEXTSCU320002, TAEXTSCU200003, TAEXTSCU200003 FF | 100% |  | 2027-03-09 | 2027-03-18 |  |  | LABOR [128 h]; PLUMBER [128 h]; COST [72300] | 72,300 | 72,300 |
| TAEXTSCU320005 |  | Install Valves with fittings | 4d | 2026-10-04 A | 2027-04-08 | TAEXTSCU320004 FF | 20% | 3.2d | 2027-03-21 | 2027-03-25 | 79.92d | 0d | LABOR [64 h]; PLUMBER [64 h]; COST [6320] | 6,320 | 1,264 |
| TAEXTSCU320004 |  | Backfilling Works for Trench | 16d | 2027-03-21 | 2027-04-08 | TAEXTSCU320003, TAEXTSCU320003 FF |  |  |  |  | 79.92d | 0d | DUMP TRUCK [60 h]; WATER TANKER [24 h]; EXCAVATOR [30 h]; LABOR [60 h]; DUMP TRUCK DRIVER [60 h]; WATER TANKER DRIVER [24 h]; EXCAVATOR OPERATOR [30 h]; COMPACTOR [32 h]; COST [26480] | 26,480 |  |
| TAEXTSCU320006 |  | Valve Chamber works | 17d | 2027-04-08 | 2027-04-28 | TAEXTSCU320004, TAEXTSCU320005 |  |  |  |  | 79.92d | 0d | WATER TANKER [32 h]; EXCAVATOR [32 h]; CONCRET MIXER [28 h]; LABOR [70 h]; WATER TANKER DRIVER [32 h]; EXCAVATOR OPERATOR [32 h]; PLUMBER [56 h]; STEEL FIXER [56 h]; CARPENTER [32 h]; MASON [56 h]; CONCRET MIXER OPERATOR [28 h]; COST [44350] | 44,350 |  |
| TAEXTSCU320007 |  | Inspection Test | 5d | 2027-04-28 | 2027-05-04 | TAEXTSCU320006, TAEXPTCU320008 |  |  |  |  | 79.92d | 28.5d | WATER TANKER [40 h]; LABOR [64 h]; WATER TANKER DRIVER [40 h]; PLUMBER [64 h]; COST [4250] | 4,250 |  |
|  | 3 | **Storm Networks** |  | 2027-04-14 | 2027-06-27 |  |  |  |  |  |  |  |  |  |  |
| TAEXSTCU320001 |  | Excavation works for Trench | 10d | 2027-04-14 | 2027-04-26 | TAEXSTCL0800011, TAEXELCU320001 |  |  |  |  | 0.97d | 0d | DUMP TRUCK [272 h]; EXCAVATOR [136 h]; LABOR [68 h]; DUMP TRUCK DRIVER [272 h]; EXCAVATOR OPERATOR [136 h]; COST [288364] | 288,364.24 |  |
| TAEXSTCU320002 |  | Bedding Works | 3d | 2027-04-26 | 2027-04-29 | TAEXSTCU320001 |  |  |  |  | 18.97d | 0d | DUMP TRUCK [16 h]; EXCAVATOR [16 h]; LABOR [48 h]; DUMP TRUCK DRIVER [16 h]; EXCAVATOR OPERATOR [16 h]; COST [65596.9] | 65,596.88 |  |
| TAEXSTCU320003 |  | Install GRP Pipes & Fittings | 6d | 2027-04-29 | 2027-05-06 | TAEXSTCU320002 |  |  |  |  | 18.97d | 0d | EXCAVATOR [96 h]; LABOR [96 h]; EXCAVATOR OPERATOR [96 h]; PLUMBER [192 h]; COST [268197] | 268,197.08 |  |
| TAEXSTCU320004 |  | Backfilling Works for Trench | 17d | 2027-05-04 | 2027-05-24 | TAEXSTCU320003 FF+15d |  |  |  |  | 18.97d | 0d | DUMP TRUCK [256 h]; WATER TANKER [136 h]; EXCAVATOR [136 h]; LABOR [256 h]; DUMP TRUCK DRIVER [256 h]; WATER TANKER DRIVER [136 h]; EXCAVATOR OPERATOR [136 h]; COMPACTOR [136 h]; COST [106922] | 106,921.51 |  |
| TAEXSTCU320005 |  | Manhole Installation with backfilling | 16d | 2027-05-17 | 2027-06-05 | TAEXSTCU320004 FF+10d, TAEXSTCU320003 SS, TAPQDVST00061 |  |  |  |  | 18.97d | 0d | DUMP TRUCK [90 h]; EXCAVATOR [128 h]; LABOR [128 h]; DUMP TRUCK DRIVER [90 h]; EXCAVATOR OPERATOR [128 h]; PLUMBER [128 h]; MASON [128 h]; COST [218147] | 218,147 |  |
| TAEXSTCU320006 |  | Install Catch Basin with UPVC Pipes & Fittings | 15d | 2027-06-05 | 2027-06-22 | TAEXSTCU320005, TAEXSTCL060006 |  |  |  |  | 18.97d | 0d | EXCAVATOR [60 h]; LABOR [120 h]; EXCAVATOR OPERATOR [60 h]; PLUMBER [120 h]; COST [285220] | 285,220 |  |
| TAEXSTCU320007 |  | Leakage Test | 4d | 2027-06-22 | 2027-06-27 | TAEXSTCU320005, TAEXSTCU320006, TAEXTSCU320007 |  |  |  |  | 40.97d | 40d | WATER TANKER [32 h]; LABOR [32 h]; WATER TANKER DRIVER [32 h]; PLUMBER [32 h]; COST [14500] | 14,500 |  |

| ID | WBS | Activity | Duration | Start | Finish | Predecessors | Total float | Free float | Resources | Cost |
| --- | --- | --- | --- | --- | --- | --- | --- | --- | --- | --- |
|  | 16 | **Upgrade Local 33** |  | 2026-09-20 | 2027-09-29 |  |  |  |  |  |
|  | 27 | **Road Works** |  | 2027-05-19 | 2027-06-15 |  |  |  |  |  |
| TAEXRDCU330002 |  | Precast Concret Kerps | 10d | 2027-05-19 | 2027-05-31 | TAEXRDCU120002 FS+30d | 41.96d | 0d | LABOR [320 h]; COST [185870] | 185,870 |
| TAEXRDCU330001 |  | BWC Asphalt Wearing Course with RC | 1d | 2027-05-31 | 2027-06-01 | TAEXRDCU330002 | 41.96d | 0d | ROLEER [16 h]; DUMP TRUCK [32 h]; MILLING MACHINE [8 h]; WHEEL ROLLER [16 h]; LABOR [40 h]; DUMP TRUCK DRIVER [32 h]; MILLING MACHINE OPERATOR [8 h]; WHEEL ROLLER OPERATOR [16 h]; ROLLER OPERATOR [16 h]; COST [411511] | 411,511 |
| TAEXRDCU330003 |  | Precast Interlock Works | 8d | 2027-06-01 | 2027-06-10 | TAEXRDCU330002, TAEXRDCU330001 | 41.96d | 0d | LABOR [254 h]; COST [168704] | 168,704 |
| TAEXRDCU330004 |  | Stone Paving works | 2d | 2027-06-10 | 2027-06-13 | TAEXRDCU330003 | 41.96d | 0d | DUMP TRUCK [32 h]; LABOR [160 h]; DUMP TRUCK DRIVER [32 h]; COST [21000] | 21,000 |
| TAEXRDCU330005 |  | Road Marking | 1d | 2027-06-13 | 2027-06-14 | TAEXRDCU330004 | 41.96d | 0d | LABOR [32 h]; COST [4100] | 4,100 |
| TAEXRDCU330006 |  | Traffic Sinage | 1d | 2027-06-14 | 2027-06-15 | TAEXRDCU330005 | 41.96d | 40.12d | EXCAVATOR [8 h]; LABOR [32 h]; EXCAVATOR OPERATOR [8 h]; COST [33450] | 33,450 |
|  | 18 | **Electrical Works** |  | 2027-04-14 | 2027-09-29 |  |  |  |  |  |
| TAEXELCU330001 |  | Trench Cut off | 11d | 2027-04-14 | 2027-04-27 | TAEXELCU320001 | -29.3d | 0d | DUMP TRUCK [160 h]; EXCAVATOR [88 h]; LABOR [44 h]; DUMP TRUCK DRIVER [160 h]; EXCAVATOR OPERATOR [88 h]; COST [35620] | 35,620 |
| TAEXELCU330002 |  | Drawpit and PVC Pipes Installation | 9d | 2027-04-27 | 2027-05-08 | TAEXELCU330001, TAPQDVEL0005 | 65.97d | 0d | ELECTRACIAN [160 h]; EXCAVATOR [80 h]; LABOR [160 h]; EXCAVATOR OPERATOR [80 h]; COST [74560] | 74,560 |
| TAEXELCU330003 |  | Road Crossing Ducts | 10d | 2027-05-08 | 2027-05-19 | TAEXELCU330002 | 70.97d | 0d | DUMP TRUCK [40 h]; EXCAVATOR [72 h]; DUMP TRUCK DRIVER [40 h]; EXCAVATOR OPERATOR [72 h]; COST [350] | 350 |
| TAEXELCU330006 |  | Poles RC Foundation | 4d | 2027-05-08 | 2027-05-12 | TAEXELCU330002, TAPQDVEL0005 | 65.97d | 0d | EXCAVATOR [60 h]; LABOR [120 h]; EXCAVATOR OPERATOR [60 h]; COST [12500] | 12,500 |
| TAEXELCU330008 |  | Lighting Pole Installation with Luminares | 4d | 2027-05-12 | 2027-05-17 | TAEXELCU330006 | 65.97d | 95.27d | ELECTRACIAN [112 h]; CRANE [32 h]; CRANE OPERATOR [32 h]; COST [122050] | 122,050 |
| TAEXELCU330004 |  | Trench Backfilling | 13d | 2027-05-19 | 2027-06-03 | TAEXELCU330003 | 70.97d | 0d | DUMP TRUCK [160 h]; WATER TANKER [144 h]; EXCAVATOR [160 h]; LABOR [160 h]; DUMP TRUCK DRIVER [160 h]; WATER TANKER DRIVER [144 h]; EXCAVATOR OPERATOR [160 h]; COMPACTOR [144 h]; COST [4560] | 4,560 |
| TAEXELCU330005 |  | Cables Pulling | 3d | 2027-06-03 | 2027-06-07 | TAEXELCU330002, TAEXELCU330003, TAEXELCU330004 | 70.97d | 97.78d | ELECTRACIAN [120 h]; LABOR [160 h]; COST [168000] | 168,000 |
| TAEXELCU330007 |  | Earthing cables | 2d | 2027-09-27 | 2027-09-29 | TAEXELCU330006, TAEXELCU330005, TAEXELCU320007 | -26.81d | 0d | ELECTRACIAN [80 h]; LABOR [40 h]; COST [2320] | 2,320 |
|  | 1 | **Telecommunication Works** |  | 2027-04-19 | 2027-08-24 |  |  |  |  |  |
| TAEXTCCU330001 |  | Trench Cut off | 5d | 2027-04-19 | 2027-04-25 | TAEXTCCL050001 | -17.61d | 0d | DUMP TRUCK [80 h]; EXCAVATOR [40 h]; LABOR [20 h]; DUMP TRUCK DRIVER [80 h]; EXCAVATOR OPERATOR [40 h]; COST [7500] | 7,500 |
| TAEXTCCU330002 |  | Drawpit and PVC Pipes Installation | 4d | 2027-08-05 | 2027-08-10 | TAEXTCCU330001, TAEXCCCU320002 | -20.27d | 0d | ELECTRACIAN [80 h]; EXCAVATOR [32 h]; LABOR [16 h]; EXCAVATOR OPERATOR [32 h]; COST [80250] | 80,250 |
| TAEXTCCU330003 |  | Road Crossing Ducts | 3d | 2027-08-10 | 2027-08-14 | TAEXTCCU330002 | -20.27d | 0d | DUMP TRUCK [40 h]; EXCAVATOR [24 h]; DUMP TRUCK DRIVER [40 h]; EXCAVATOR OPERATOR [24 h]; COST [10500] | 10,500 |
| TAEXTCCU330004 |  | Trench Backfilling | 9d | 2027-08-14 | 2027-08-24 | TAEXTCCU330003 | -20.27d | 0d | DUMP TRUCK [36 h]; WATER TANKER [16 h]; EXCAVATOR [18 h]; LABOR [32 h]; DUMP TRUCK DRIVER [36 h]; WATER TANKER DRIVER [16 h]; EXCAVATOR OPERATOR [18 h]; COMPACTOR [18 h]; COST [25005] | 25,005 |
|  | 17 | **CCTV Works** |  | 2027-04-01 | 2027-08-11 |  |  |  |  |  |
| TAEXCCCU330001 |  | Pipe Installation with manhole | 8d | 2027-04-01 | 2027-04-11 | TAEXCCCU320001 | -14.55d | 0d | ELECTRACIAN [96 h]; LABOR [192 h]; COST [23144] | 23,144 |
| TAEXCCCU330002 |  | CCTV Swiches Lighting panels Installation | 10d | 2027-07-08 | 2027-07-20 | TAEXCCCU330001, TAEXCCCU290002 | 0.45d | 0d | ELECTRACIAN [330 h]; EXCAVATOR [40 h]; LABOR [330 h]; EXCAVATOR OPERATOR [40 h]; COST [2515] | 2,515 |
| TAEXCCCU330003 |  | Cable laying and connected with Panels | 9d | 2027-07-20 | 2027-07-31 | TAEXCCCU330002 | 0.45d | 0d | ELECTRACIAN [160 h]; LABOR [320 h]; COST [19654] | 19,654 |
| TAEXCCCU330004 |  | Pole Installation with IP Outdoor CCTV POE Camera | 10d | 2027-07-31 | 2027-08-11 | TAEXCCCU330003 | 0.45d | 16.72d | ELECTRACIAN [160 h]; EXCAVATOR [60 h]; LABOR [320 h]; EXCAVATOR OPERATOR [60 h]; COST [6446] | 6,446 |

| ID | WBS | Activity | Duration | Start | Finish | Predecessors | Complete | Planned start | Planned finish | Total float | Free float | Resources | Cost | Actual cost |
| --- | --- | --- | --- | --- | --- | --- | --- | --- | --- | --- | --- | --- | --- | --- |
|  | 2 | **Potable Networks** |  | 2026-12-19 | 2027-02-28 |  |  |  |  |  |  |  |  |  |
| TAEXPTCU330001 |  | Excavation works for Trench | 4d | 2026-12-19 | 2026-12-23 | TAEXPTCU320001 |  |  |  | 71.04d | 0d | DUMP TRUCK [60 h]; EXCAVATOR [30 h]; LABOR [15 h]; DUMP TRUCK DRIVER [60 h]; EXCAVATOR OPERATOR [30 h]; COST [48350] | 48,350 |  |
| TAEXPTCU330002 |  | Bedding Works | 2d | 2026-12-23 | 2026-12-26 | TAEXPTCU330001 |  |  |  | 71.04d | 4d | DUMP TRUCK [16 h]; EXCAVATOR [16 h]; LABOR [32 h]; DUMP TRUCK DRIVER [16 h]; EXCAVATOR OPERATOR [16 h]; COST [7050] | 7,050 |  |
| TAEXPTCU330003 |  | Install Pipes & Fittings | 5d | 2026-12-30 | 2027-01-05 | TAEXPTCU330002, TAEXPTCU320003 |  |  |  | 67.04d | 0d | LABOR [80 h]; PLUMBER [40 h]; COST [63300] | 63,300 |  |
| TAEXPTCU330004 |  | Backfilling Works for Trench | 12d | 2027-01-05 | 2027-01-19 | TAEXPTCU330003 |  |  |  | 67.04d | 0d | DUMP TRUCK [180 h]; WATER TANKER [90 h]; EXCAVATOR [90 h]; LABOR [50 h]; DUMP TRUCK DRIVER [180 h]; WATER TANKER DRIVER [90 h]; EXCAVATOR OPERATOR [90 h]; COMPACTOR [96 h]; COST [22050] | 22,050 |  |
| TAEXPTCU330005 |  | Install Valves with fittings | 4d | 2027-01-14 | 2027-01-19 | TAEXPTCU330004 FF, TAPQDVPT00021 |  |  |  | 67.04d | 5d | LABOR [64 h]; PLUMBER [64 h]; COST [9600] | 9,600 |  |
| TAEXPTCU330006 |  | Install fire hydrent | 5d | 2027-01-25 | 2027-01-31 | TAEXPTCU330003, TAEXPTCU330005, TAEXPTCU320006 |  |  |  | 62.04d | 0d | LABOR [80 h]; PLUMBER [40 h]; COST [22400] | 22,400 |  |
| TAEXPTCU330007 |  | Valve Chamber works | 21d | 2027-01-31 | 2027-02-24 | TAEXPTCU330006, TAEXPTCU320007 |  |  |  | 62.04d | 0d | WATER TANKER [32 h]; EXCAVATOR [28 h]; CONCRET MIXER [28 h]; LABOR [56 h]; WATER TANKER DRIVER [32 h]; EXCAVATOR OPERATOR [28 h]; PLUMBER [56 h]; STEEL FIXER [48 h]; CARPENTER [30 h]; MASON [56 h]; CONCRET MIXER OPERATOR [28 h]; COST [22500] | 22,500 |  |
| TAEXPTCU330008 |  | Inspection Test | 3d | 2027-02-24 | 2027-02-28 | TAEXPTCU330007 |  |  |  | 135.14d | 73.1d | WATER TANKER [24 h]; LABOR [32 h]; WATER TANKER DRIVER [24 h]; PLUMBER [24 h]; COST [5100] | 5,100 |  |
|  | 3 | **TSE Networks** |  | 2027-03-09 | 2027-05-20 |  |  |  |  |  |  |  |  |  |
| TAEXTSCU330001 |  | Excavation works for Trench | 25d | 2027-03-09 | 2027-04-07 | TAEXTSCU320001 |  |  |  | 51.42d | 0d | DUMP TRUCK [64 h]; EXCAVATOR [32 h]; LABOR [25 h]; DUMP TRUCK DRIVER [64 h]; EXCAVATOR OPERATOR [32 h]; COST [48560] | 48,560 |  |
| TAEXTSCU330002 |  | Bedding Works | 2d | 2027-04-07 | 2027-04-10 | TAEXTSCU330001 |  |  |  | 51.42d | 0d | DUMP TRUCK [16 h]; EXCAVATOR [16 h]; LABOR [32 h]; DUMP TRUCK DRIVER [16 h]; EXCAVATOR OPERATOR [16 h]; COST [3860] | 3,860 |  |
| TAEXTSCU330003 |  | Install Pipes & Fittings | 5d | 2027-04-10 | 2027-04-15 | TAEXTSCU330002, TAEXTSCU320003 |  |  |  | 51.42d | 0d | LABOR [80 h]; PLUMBER [80 h]; COST [60530] | 60,530 |  |
| TAEXTSCU330004 |  | Backfilling Works for Trench | 12d | 2027-04-15 | 2027-04-29 | TAEXTSCU330003 |  |  |  | 65.92d | 0d | DUMP TRUCK [60 h]; WATER TANKER [24 h]; EXCAVATOR [30 h]; LABOR [60 h]; DUMP TRUCK DRIVER [60 h]; WATER TANKER DRIVER [24 h]; EXCAVATOR OPERATOR [30 h]; COMPACTOR [24 h]; COST [20100] | 20,100 |  |
| TAEXTSCU330005 |  | Install Valves with fittings | 4d | 2027-04-25 | 2027-04-29 | TAEXTSCU330004 FF |  |  |  | 65.92d | 0d | LABOR [64 h]; PLUMBER [64 h]; COST [6320] | 6,320 |  |
| TAEXTSCU330006 |  | Valve Chamber works | 15d | 2027-04-29 | 2027-05-17 | TAEXTSCU330005 |  |  |  | 65.92d | 0d | WATER TANKER [20 h]; EXCAVATOR [30 h]; CONCRET MIXER [24 h]; LABOR [60 h]; WATER TANKER DRIVER [20 h]; EXCAVATOR OPERATOR [30 h]; PLUMBER [60 h]; STEEL FIXER [60 h]; CARPENTER [30 h]; MASON [60 h]; CONCRET MIXER OPERATOR [24 h]; COST [38620] | 38,620 |  |
| TAEXTSCU330007 |  | Inspection Test | 3d | 2027-05-17 | 2027-05-20 | TAEXTSCU330006 |  |  |  | 65.92d | 14.5d | WATER TANKER [24 h]; LABOR [64 h]; WATER TANKER DRIVER [24 h]; PLUMBER [64 h]; COST [3850] | 3,850 |  |
|  | 4 | **Sewerage Networks** |  | 2026-09-20 | 2027-02-27 |  |  |  |  |  |  |  |  |  |
| TAEXSWCU330001 |  | Excavation works for Trench | 10d | 2026-09-20 A | 2026-10-17 A | TAEXSWCU200001 FS+47d | 100% | 2027-01-23 | 2027-02-03 |  |  | DUMP TRUCK [160 h]; EXCAVATOR [80 h]; LABOR [40 h]; DUMP TRUCK DRIVER [160 h]; EXCAVATOR OPERATOR [80 h]; COST [66700] | 66,700 | 66,700 |
| TAEXSWCU330002 |  | Bedding Works | 2d | 2026-10-03 A | 2026-10-18 A | TAEXSWCU330001 | 100% | 2027-02-07 | 2027-02-09 |  |  | DUMP TRUCK [16 h]; EXCAVATOR [8 h]; LABOR [32 h]; DUMP TRUCK DRIVER [16 h]; EXCAVATOR OPERATOR [8 h]; COST [5600] | 5,600 | 5,600 |
| TAEXSWCU330003 |  | Install GRP Pipes & Fittings | 7d | 2026-10-04 A | 2026-10-18 A | TAEXSWCU330002 | 100% | 2027-02-09 | 2027-02-17 |  |  | EXCAVATOR [56 h]; LABOR [112 h]; EXCAVATOR OPERATOR [56 h]; PLUMBER [56 h]; COST [93152] | 93,152 | 93,152 |
| TAEXSWCU330004 |  | Backfilling Works for Trench | 12d | 2027-01-27 | 2027-02-10 | TAEXSWCU330003 FF |  |  |  | 142.68d | 11d | DUMP TRUCK [192 h]; WATER TANKER [96 h]; EXCAVATOR [96 h]; LABOR [96 h]; DUMP TRUCK DRIVER [192 h]; WATER TANKER DRIVER [96 h]; EXCAVATOR OPERATOR [96 h]; COMPACTOR [96 h]; COST [20350] | 20,350 |  |
| TAEXSWCU330005 |  | Manhole Installation with backfilling | 11d | 2027-02-10 | 2027-02-23 | TAEXSWCU330004 FF, TAEXSWCU330003, TAPQDVSW00021 |  |  |  | 131.68d | 0d | DUMP TRUCK [88 h]; EXCAVATOR [88 h]; LABOR [172 h]; DUMP TRUCK DRIVER [88 h]; EXCAVATOR OPERATOR [88 h]; PLUMBER [88 h]; MASON [32 h]; COST [61520] | 61,520 |  |
| TAEXSWCU330006 |  | Leakage Test | 3d | 2027-02-23 | 2027-02-27 | TAEXSWCU330005 |  |  |  | 131.68d | 8.97d | WATER TANKER [24 h]; LABOR [48 h]; WATER TANKER DRIVER [24 h]; PLUMBER [24 h]; COST [5600] | 5,600 |  |

| ID | WBS | Activity | Duration | Start | Finish | Predecessors | Complete | Remaining | Planned start | Planned finish | Total float | Free float | Resources | Cost | Actual cost |
| --- | --- | --- | --- | --- | --- | --- | --- | --- | --- | --- | --- | --- | --- | --- | --- |
|  | 5 | **Storm Networks** |  | 2027-05-08 | 2027-07-20 |  |  |  |  |  |  |  |  |  |  |
| TAEXSTCU330001 |  | Excavation works for Trench | 16d | 2027-05-08 | 2027-05-26 | TAEXSTCU320001 FS+10d |  |  |  |  | 0.97d | 0d | DUMP TRUCK [256 h]; EXCAVATOR [128 h]; LABOR [64 h]; DUMP TRUCK DRIVER [256 h]; EXCAVATOR OPERATOR [128 h]; COST [125064] | 125,064 |  |
| TAEXSTCU330002 |  | Bedding Works | 2d | 2027-05-26 | 2027-05-29 | TAEXSTCU330001 |  |  |  |  | 7.97d | 0d | DUMP TRUCK [12 h]; EXCAVATOR [12 h]; LABOR [32 h]; DUMP TRUCK DRIVER [12 h]; EXCAVATOR OPERATOR [12 h]; COST [61826.9] | 61,826.88 |  |
| TAEXSTCU330003 |  | Install GRP Pipes & Fittings | 7d | 2027-05-29 | 2027-06-06 | TAEXSTCU330002 |  |  |  |  | 7.97d | 0d | EXCAVATOR [56 h]; LABOR [56 h]; EXCAVATOR OPERATOR [56 h]; PLUMBER [112 h]; COST [99367.4] | 99,367.36 |  |
| TAEXSTCU330004 |  | Backfilling Works for Trench | 12d | 2027-06-09 | 2027-06-23 | TAEXSTCU330003 FF+15d |  |  |  |  | 7.97d | 0d | DUMP TRUCK [192 h]; WATER TANKER [96 h]; EXCAVATOR [96 h]; LABOR [96 h]; DUMP TRUCK DRIVER [192 h]; WATER TANKER DRIVER [96 h]; EXCAVATOR OPERATOR [96 h]; COMPACTOR [96 h]; COST [92500] | 92,500 |  |
| TAEXSTCU330005 |  | Manhole Installation with backfilling | 11d | 2027-06-22 | 2027-07-05 | TAEXSTCU330004 FF+10d, TAEXSTCU330003, TAPQDVST00061 |  |  |  |  | 7.97d | 0d | DUMP TRUCK [75 h]; EXCAVATOR [88 h]; LABOR [88 h]; DUMP TRUCK DRIVER [75 h]; EXCAVATOR OPERATOR [88 h]; PLUMBER [88 h]; MASON [88 h]; COST [99630] | 99,630 |  |
| TAEXSTCU330006 |  | Install Catch Basin with UPVC Pipes & Fittings | 10d | 2027-07-05 | 2027-07-17 | TAEXSTCU330005, TAEXSTCU320006 |  |  |  |  | 7.97d | 0d | EXCAVATOR [40 h]; LABOR [80 h]; EXCAVATOR OPERATOR [40 h]; PLUMBER [80 h]; COST [90200] | 90,200 |  |
| TAEXSTCU330007 |  | Leakage Test | 3d | 2027-07-17 | 2027-07-20 | TAEXSTCU330005, TAEXSTCU330006 |  |  |  |  | 20.97d | 20d | WATER TANKER [24 h]; LABOR [24 h]; WATER TANKER DRIVER [24 h]; PLUMBER [24 h]; COST [13200] | 13,200 |  |
|  | 17 | **Pond** |  | 2025-09-04 | 2026-12-29 |  |  |  |  |  |  |  |  |  |  |
|  | 21 | **Storm Water Pond** |  | 2025-09-04 | 2026-12-29 |  |  |  |  |  |  |  |  |  |  |
| TAEXSTCSWP0001 |  | Excavation works for Ponds 1st Part | 27d | 2025-09-04 A | 2025-10-05 A | TAGNMZ0001 SS+7d, TAGNML0012 SS | 100% |  |  |  |  |  | DUMP TRUCK [960 h]; EXCAVATOR [1920 h]; LABOR [480 h]; DUMP TRUCK DRIVER [960 h]; EXCAVATOR OPERATOR [1920 h]; COST [1170180] | 1,170,180 | 1,170,180 |
| TAEXSTCSWP0002 |  | Excavation works for Ponds 2nd Part | 24d | 2025-10-06 A | 2025-11-02 A | TAEXSTCSWP0001 | 100% |  |  |  |  |  | DUMP TRUCK [960 h]; EXCAVATOR [1920 h]; LABOR [480 h]; DUMP TRUCK DRIVER [960 h]; EXCAVATOR OPERATOR [1920 h]; COST [1170180] | 1,170,180 | 1,170,180 |
| TAEXSTCSWP0003 |  | Excavation works for Ponds 3rd Part | 26d | 2025-11-03 A | 2025-12-02 A | TAEXSTCSWP0002 | 100% |  |  |  |  |  | DUMP TRUCK [960 h]; EXCAVATOR [1920 h]; LABOR [480 h]; DUMP TRUCK DRIVER [960 h]; EXCAVATOR OPERATOR [1920 h]; COST [1670180] | 1,670,180 | 1,670,180 |
| TAEXSTCSWP0008 |  | Excavation works for Ponds slop | 172d | 2025-11-15 A | 2026-06-02 A | TAEXSTCSWP0005 | 100% |  |  |  |  |  | DUMP TRUCK [960 h]; EXCAVATOR [960 h]; LABOR [480 h]; DUMP TRUCK DRIVER [960 h]; EXCAVATOR OPERATOR [960 h]; COST [570167] | 570,167 | 570,167 |
| TAEXSTCSWP0004 |  | Excavation works for Ponds 4th Part | 57d | 2025-12-02 A | 2026-02-05 A | TAEXSTCSWP0003 | 100% |  |  |  |  |  | DUMP TRUCK [960 h]; EXCAVATOR [1920 h]; LABOR [160 h]; DUMP TRUCK DRIVER [960 h]; EXCAVATOR OPERATOR [1920 h]; COST [570180] | 570,180.1 | 570,180.1 |
| TAEXSTCSWP0013 |  | Filling with suitable and approved imported material for Dike | 94d | 2026-01-14 A | 2026-05-03 A | TAPQDVST0008 SS+3d | 100% |  |  |  |  |  | ROLEER [120 h]; DUMP TRUCK [120 h]; WATER TANKER [120 h]; EXCAVATOR [120 h]; GRADER [120 h]; LABOR [120 h]; GRADER OPERATOR [120 h]; DUMP TRUCK DRIVER [120 h]; WATER TANKER DRIVER [120 h]; ROLLER OPERATOR [120 h]; COST [133721] | 133,721.28 | 133,721.28 |
| TAEXSTCSWP0005 |  | Excavation works for Ponds 5th Part | 17d | 2026-02-08 A | 2026-02-26 A | TAEXSTCSWP0004 | 100% |  |  |  |  |  | DUMP TRUCK [960 h]; EXCAVATOR [1450 h]; LABOR [160 h]; DUMP TRUCK DRIVER [960 h]; EXCAVATOR OPERATOR [1450 h]; COST [70180] | 70,180 | 70,180 |
| TAEXSTCSWP0014 |  | Loose Riprap, for protection | 10d | 2026-05-11 A | 2026-05-21 A | TAEXSTCSWP0013 | 100% |  |  |  |  |  | DUMP TRUCK [180 h]; EXCAVATOR [96 h]; LABOR [180 h]; DUMP TRUCK DRIVER [180 h]; EXCAVATOR OPERATOR [96 h]; MASON [270 h]; COST [234945] | 234,944.65 | 234,944.65 |
| TAEXSTCSWP0006 |  | Excavation works for Ponds 6th part | 30d | 2026-06-06 A | 2026-06-15 A | TAEXSTCSWP0005, TAEXSTCL0200061 | 100% |  | 2026-08-06 | 2026-09-10 |  |  | DUMP TRUCK [960 h]; EXCAVATOR [1460 h]; LABOR [160 h]; DUMP TRUCK DRIVER [960 h]; EXCAVATOR OPERATOR [1460 h]; COST [346307] | 346,307 | 346,307 |
| TAEXSTCSWP00141 |  | Loose Riprap, for protection Part 01 | 15d | 2026-06-17 A | 2026-09-22 A | TAEXSTCSWP0014, TAPQDVST00101, TAEXSTCSWP0012 | 100% |  | 2027-04-22 | 2027-05-10 |  |  | DUMP TRUCK [180 h]; EXCAVATOR [96 h]; LABOR [180 h]; DUMP TRUCK DRIVER [180 h]; EXCAVATOR OPERATOR [96 h]; MASON [270 h]; COST [287155] | 287,154.57 | 287,154.57 |
| TAEXSTCSWP0007 |  | Excavation works for ponds 7th part | 45d | 2026-06-18 A | 2026-11-03 | TAEXSTCSWP0006 | 95% | 2.25d | 2026-09-10 | 2026-11-02 | 213.75d | 0d | DUMP TRUCK [240 h]; EXCAVATOR [365 h]; LABOR [40 h]; DUMP TRUCK DRIVER [240 h]; EXCAVATOR OPERATOR [365 h]; COST [746307] | 746,307 | 708,991.65 |
| TAEXSTCSWP0009 |  | Riprap Works part 1 | 12d | 2026-06-21 A | 2026-11-04 | TAEXSTCSWP0008, TAPQDVST00071, TAEXSTCSWP0007 | 95% | 0.6d | 2027-01-21 | 2027-02-03 | 213.75d | 0d | EXCAVATOR [160 h]; LABOR [160 h]; EXCAVATOR OPERATOR [160 h]; MASON [160 h]; COST [582875] | 582,875 | 553,731.25 |
| TAEXSTCSWP0012 |  | Outfall structure works | 20d | 2026-07-05 A | 2026-12-29 | TAEXSTCSWP0011 FS+15d | 15% | 17d | 2027-02-17 | 2027-03-13 | 213.75d | 0d | CONCRET MIXER [160 h]; LABOR [320 h]; STEEL FIXER [160 h]; CARPENTER [160 h]; CONCRET MIXER OPERATOR [160 h]; COST [24499] | 24,499 | 3,674.85 |
| TAEXSTCSWP0010 |  | Riprap Works Part 2 | 20d | 2026-08-08 A | 2026-11-08 | TAEXSTCSWP0009 | 85% | 3d | 2026-11-16 | 2026-12-09 | 213.75d | 0d | EXCAVATOR [160 h]; LABOR [160 h]; EXCAVATOR OPERATOR [160 h]; MASON [160 h]; COST [409255] | 409,255 | 347,866.75 |
| TAEXSTCSWP0011 |  | Sand Marl Mix Ballast layer | 12d | 2026-11-08 | 2026-11-22 | TAEXSTCSWP0008, TAPQDVST00071 SS+5d, TAEXSTCSWP0010 |  |  |  |  | 213.75d | 0d | DUMP TRUCK [96 h]; GRADER [96 h]; LABOR [180 h]; GRADER OPERATOR [96 h]; DUMP TRUCK DRIVER [96 h]; COST [1227455] | 1,227,455.34 |  |

| ID | WBS | Activity | Duration | Start | Finish | Predecessors | Total float | Free float | Resources | Cost |
| --- | --- | --- | --- | --- | --- | --- | --- | --- | --- | --- |
|  | 22 | **CLOSE OUT** |  | 2027-02-06 | 2027-10-07 |  |  |  |  |  |
|  | 3 | **Final Testing and Commmisionning** |  | 2027-02-06 | 2027-09-18 |  |  |  |  |  |
|  | 1 | **Final Test & commisionning Zone 1** |  | 2027-03-04 | 2027-07-05 |  |  |  |  |  |
| TACOFTFT0007 |  | Sewerage Networks | 6d | 2027-03-04 | 2027-03-11 | TAEXSWCU210006, TAEXSWCL100006, TAEXSWCL0500061 | 141.56d | 170.86d | WATER TANKER [48 h]; LABOR [48 h]; WATER TANKER DRIVER [48 h]; PLUMBER [48 h]; COST [225458] | 225,458 |
| TACOFTFT0008 |  | Storm Water Drainage Networks | 7d | 2027-03-04 | 2027-03-13 | TAEXSTCC030007, TAEXSTCU210007, TAEXSTCL100007, TAEXSTCC0200071 FS+20d | 136.56d | 30.24d | WATER TANKER [56 h]; LABOR [56 h]; WATER TANKER DRIVER [56 h]; PLUMBER [56 h]; COST [240848] | 240,848 |
| TACOFTFT0006 |  | TSE Networks | 4d | 2027-03-20 | 2027-03-24 | TAEXTSCC020007, TAEXTSCC030005, TAEXTSCU210007, TAEXTSCL100007 | 130.32d | 159.62d | WATER TANKER [32 h]; LABOR [32 h]; WATER TANKER DRIVER [32 h]; PLUMBER [32 h]; COST [546448] | 546,448 |
| TACOFTFT0005 |  | Potable Water Networks | 4d | 2027-04-17 | 2027-04-21 | TAEXPTCC020008, TAEXPTCU210008, TAEXPTCL100008, TACOFTFT0008 | 106.32d | 135.62d | WATER TANKER [32 h]; LABOR [32 h]; WATER TANKER DRIVER [32 h]; PLUMBER [32 h]; COST [589072] | 589,072 |
| TACOFTFT0003 |  | Telecommunications Networks | 4d | 2027-06-08 | 2027-06-13 | TAEXTCCC020004, TAEXTCCC030004, TAEXTCCU210004, TAEXTCCL100004 | 55.05d | 84.35d | COST [294000] | 294,000 |
| TACOFTFT0004 |  | CCTV Networks | 7d | 2027-06-14 | 2027-06-22 | TAEXCCCC030004, TAEXCCCU210004, TAEXCCCU260004, TAEXCCCL100004, TAEXCCCC020004 | 53.45d | 82.75d | COST [399630] | 399,630 |
| TACOFTFT0002 |  | Electrical NetWorks | 7d | 2027-06-17 | 2027-06-26 | TAEXELCC020008 FS+30d, TAEXELCC030008, TAEXELCU210008, TAEXELCU260008, TAEXELCL100008 | 44.9d | 74.2d | COST [104750] | 104,750 |
| TACOFTFT0001 |  | Road Works | 4d | 2027-06-30 | 2027-07-05 | TAEXRDCC020012, TAEXRDCC030012, TAEXRDCU210006, TAEXRDCL100012 | 17.9d | 16.06d | COST [241798] | 241,798 |
|  | 2 | **Final Test & commisionning Zone 2** |  | 2027-02-06 | 2027-09-07 |  |  |  |  |  |
| TACOFTFT0015 |  | Sewerage Networks | 6d | 2027-02-06 | 2027-02-13 | TAEXSWCC010006, TAEXSWCL030006, TAEXSWCL040006, TAEXSWCL0500061 | 143.41d | 20.7d | WATER TANKER [96 h]; LABOR [48 h]; WATER TANKER DRIVER [96 h]; PLUMBER [48 h]; COST [725457] | 725,457 |
| TACOFTFT0013 |  | Potable Water Networks | 4d | 2027-03-25 | 2027-03-30 | TAEXPTCC010008, TAEXPTCL020008, TAEXPTCL030007, TAEXPTCL040008, TAEXPTCL050008, TAEXPTCL010008 FS+4d | 130.44d | 57.4d | WATER TANKER [64 h]; LABOR [32 h]; WATER TANKER DRIVER [64 h]; PLUMBER [32 h]; COST [489071] | 489,071 |
| TACOFTFT0016 |  | Storm Water Drainage Networks | 7d | 2027-03-27 | 2027-04-04 | TAEXSTCC010007, TAEXSTCU280007, TAEXSTCL020007, TAEXSTCL030007, TAEXSTCL050007 FS+15d, TAEXSTCL0400071 | 112.41d | 111.44d | WATER TANKER [112 h]; LABOR [56 h]; WATER TANKER DRIVER [112 h]; PLUMBER [56 h]; COST [440848] | 440,848 |
| TACOFTFT0014 |  | TSE Networks | 4d | 2027-03-28 | 2027-04-01 | TAEXTSCC010007, TAEXTSCU280007, TAEXTSCL020007, TAEXTSCL030007, TAEXTSCL040007, TAEXTSCL050007 FS+25d | 130.96d | 62.41d | WATER TANKER [64 h]; LABOR [32 h]; WATER TANKER DRIVER [64 h]; PLUMBER [32 h]; COST [732450] | 732,450 |
| TACOFTFT0010 |  | Electrical NetWorks | 7d | 2027-06-08 | 2027-06-16 | TAEXELCC010008, TAEXELCU280008, TAEXELCL020008, TAEXELCL030008, TAEXELCL040008, TAEXELCL050008 FS+30d | 39.05d | 68.35d | ELECTRACIAN [112 h]; COST [961120] | 961,120 |
| TACOFTFT0011 |  | Telecommunications Networks | 7d | 2027-06-28 | 2027-07-06 | TAEXTCCU280004, TAEXTCCL020004, TAEXTCCL030004, TAEXTCCL040004, TAEXTCCL050004 FS+7d, TAEXTCCC010004 | 21.73d | 42d | ELECTRACIAN [112 h]; COST [294000] | 294,000 |
| TACOFTFT0009 |  | Road Works | 7d | 2027-07-24 | 2027-08-01 | TAEXRDCC010012, TAEXRDCU280006, TAEXRDC L020012, TAEXRDCL030012, TAEXRDCL040012, TAEXRDCL050012, TACOFTFT0001 | 1.84d | 0d | WATER TANKER [56 h]; LABOR [56 h]; WATER TANKER DRIVER [56 h]; COST [542307] | 542,307 |
| TACOFTFT0012 |  | CCTV Networks | 7d | 2027-08-31 | 2027-09-07 | TAEXCCCC010004, TAEXCCCU280004, TAEXCCCL020004, TAEXCCCL030004, TAEXCCCL040004, TAEXCCCL050004 FS+1d | -12.55d | 0d | ELECTRACIAN [112 h]; COST [699625] | 699,625 |
|  | 3 | **Final Test & commisionning Zone 3** |  | 2027-03-09 | 2027-09-18 |  |  |  |  |  |
| TACOFTFT0023 |  | Sewerage Networks | 5d | 2027-03-09 | 2027-03-15 | TAEXSWCL010006, TAEXSWCL060006, TAEXSWCL070006, TAEXSWCL080006, TAEXSWCL090006, TAEXSWCU120006, TAEXSWCU200006, TAEXSWCU330006, TACOFTFT0015 | 122.71d | 0d | WATER TANKER [80 h]; LABOR [40 h]; WATER TANKER DRIVER [80 h]; PLUMBER [40 h]; COST [725457] | 725,457 |
| TACOFTFT0021 |  | Potable Water Networks | 5d | 2027-06-05 | 2027-06-10 | TAEXPTCL010008, TAEXPTCL060008, TAEXPTCL070008, TAEXPTCL080008, TAEXPTCU120008, TAEXPTCU200008, TAEXPTCU290008, TAEXPTCU320008, TAEXPTCU330008, TACOFTFT0013 | 73.04d | 0d | WATER TANKER [80 h]; LABOR [140 h]; WATER TANKER DRIVER [80 h]; PLUMBER [80 h]; COST [1239072] | 1,239,072 |
| TACOFTFT0022 |  | TSE Networks | 3d | 2027-06-13 | 2027-06-16 | TAEXTSCL010007, TAEXTSCL060007 FS+16d, TAEXTSCL070007, TAEXTSCL080007, TAEXTSCL090007, TAEXTSCU120007, TAEXTSCU200007, TAEXTSCU290007 FS+7d, TAEXTSCU320007, TAEXTSCU330007, TACOFTFT0014 | 68.55d | 0d | WATER TANKER [48 h]; LABOR [84 h]; WATER TANKER DRIVER [48 h]; PLUMBER [48 h]; COST [732449] | 732,449 |
| TACOFTFT0017 |  | Road Works | 3d | 2027-08-01 | 2027-08-04 | TAEXRDCL010012, TAEXRDCL060012, TAEXRDCL070012, TAEXRDCL080012, TAEXRDCL090012, TAEXRDCU120006, TAEXRDCU290009, TAEXRDCU330006, TACOFTFT0009 | 1.84d | 0d | WATER TANKER [24 h]; LABOR [24 h]; WATER TANKER DRIVER [24 h]; COST [541798] | 541,798 |
| TACOFTFT0024 |  | Storm Water Drainage Networks | 7d | 2027-08-12 | 2027-08-21 | TAEXSTCL010007, TAEXSTCL060007, TAEXSTCL070007, TAEXSTCL080007, TAEXSTCL090007 FS+5d, TAEXSTCU120007, TAEXSTCU320007, TAEXSTCU330007, TACOFTFT0016 | 0.97d | 30.27d | WATER TANKER [112 h]; LABOR [56 h]; WATER TANKER DRIVER [112 h]; PLUMBER [56 h]; COST [1240848] | 1,240,848 |
| TACOFTFT0019 |  | Telecommunications Networks | 7d | 2027-08-24 | 2027-09-01 | TAEXTCCL010004, TAEXTCCL060004, TAEXTCCL070004, TAEXTCCL080004, TAEXTCCL090004, TAEXTCCU120004, TAEXTCCU290004, TAEXTCCU330004, TACOFTFT0011 | -20.27d | 0d | ELECTRACIAN [112 h]; LABOR [56 h]; COST [294000] | 294,000 |
| TACOFTFT0018 |  | Electrical NetWorks | 7d | 2027-09-04 | 2027-09-12 | TAEXELCL010008, TAEXELCL060008, TAEXELCL070008, TAEXELCL080008, TAEXELCL090008, TAEXELCU060008, TAEXELCU070008, TAEXELCU080008, TAEXELCU090008, TAEXELCU120008, TAEXELCU140008, TAEXELCU200008, TAEXELCU290008, TAEXELCU320008, TAEXELCU330008, TACOFTFT0010 | -29.3d | 0d | ELECTRACIAN [112 h]; LABOR [56 h]; COST [562725] | 562,725 |
| TACOFTFT0020 |  | CCTV Networks | 9d | 2027-09-07 | 2027-09-18 | TAEXCCCL010004, TAEXCCCL060004, TAEXCCCL070004, TAEXCCCL080004, TAEXCCCL090004, TAEXCCCU060004, TAEXCCCU070004, TAEXCCCU080004, TAEXCCCU090004, TAEXCCCU120004, TAEXCCCU140004, TAEXCCCU180004 FS+2d, TAEXCCCU200004, TAEXCCCU290004, TAEXCCCU330004, TACOFTFT0012 | -12.55d | 0d | ELECTRACIAN [144 h]; LABOR [72 h]; COST [699635] | 699,635 |

| ID | WBS | Activity | Duration | Start | Finish | Predecessors | Total float | Free float | Resources | Cost |
| --- | --- | --- | --- | --- | --- | --- | --- | --- | --- | --- |
|  | 2 | **AS BUILT DRAWINGS** |  | 2027-03-09 | 2027-09-19 |  |  |  |  |  |
|  | 1 | **AS BUILT DRAWINGS Zone 1** |  | 2027-03-15 | 2027-09-19 |  |  |  |  |  |
| TACOFTAD0007 |  | Sewerage Networks | 10d | 2027-03-15 | 2027-03-27 | TAEXSWCU210006, TAEXSWCL100006, TAEXSWCC010006, TAEXSWCL030006 FF, TAEXSWCL040006 FF, TAEXSWCU200006, TAEXSWCU330006, TAEXSWCU120006, TAEXSWCL010006, TAEXSWCL060006, TAEXSWCL070006, TAEXSWCL080006, TAEXSWCL090006, TAEXSWCC0200061, TACOFTFT0023 | 122.71d | 0d | WATER TANKER [160 h]; LABOR [80 h]; WATER TANKER DRIVER [160 h]; PLUMBER [80 h]; COST [22300] | 22,300 |
| TACOFTAD0005 |  | Potable Water Networks | 10d | 2027-05-24 | 2027-06-05 | TAEXPTCC010008, TAEXPTCC020008, TAEXPTCC030007 FF, TAEXPTCU210008, TAEXPTCL100008, TAEXPTCU280008, TAEXPTCL020008, TAEXPTCL030008, TAEXPTCL040008, TAEXPTCL050008, TAEXPTCU200008, TAEXPTCU320008, TAEXPTCU330008, TAEXPTCU120008, TAEXPTCL010008, TAEXPTCL060008, TAEXPTCL070008, TAEXPTCL080008, TAEXPTCL090008, TAEXPTCU290008 FF | 62.04d | 0d | WATER TANKER [160 h]; LABOR [80 h]; WATER TANKER DRIVER [160 h]; PLUMBER [80 h]; COST [16500] | 16,500 |
| TACOFTAD0006 |  | TSE Networks | 10d | 2027-06-06 | 2027-06-17 | TAEXTSCC010007, TAEXTSCC020007, TAEXTSCC030005, TAEXTSCU210007, TAEXTSCL100007, TAEXTSCU280007, TAEXTSCL020007, TAEXTSCL030007, TAEXTSCL040007, TAEXTSCL050007, TAEXTSCU200007, TAEXTSCU320007, TAEXTSCU330007, TAEXTSCU120007, TAEXTSCL010007 FF, TAEXTSCL060007 FF, TAEXTSCL070007, TAEXTSCL080007, TAEXTSCL090007, TAEXTSCU290007 | 51.42d | 0d | WATER TANKER [160 h]; LABOR [80 h]; WATER TANKER DRIVER [160 h]; PLUMBER [80 h]; COST [15500] | 15,500 |
| TACOFTAD0008 |  | Storm Water Drainage Networks | 10d | 2027-08-01 | 2027-08-12 | TAEXSTCL050007, TAEXSTCU320007 FF, TAEXSTCU330007 FF, TAEXSTCU120007 FF, TAEXSTCL010007, TAEXSTCL060007, TAEXSTCL070007, TAEXSTCL080007, TAEXSTCL090007, TACOFTAD0007 SS, TAEXSTCC0100091 FF, TAEXSTCC0200071 | 3.97d | 0d | WATER TANKER [160 h]; LABOR [80 h]; WATER TANKER DRIVER [160 h]; PLUMBER [80 h]; COST [25480] | 25,480 |
| TACOFTAD0001 |  | Road Works | 3d | 2027-08-04 | 2027-08-08 | TAEXRDCC020012, TAEXRDCC030012, TAEXRDCU210006, TAEXRDCL100012, TACOFTFT0017 | 1.84d | 0d | WATER TANKER [24 h]; LABOR [24 h]; WATER TANKER DRIVER [24 h]; COST [12000] | 12,000 |
| TACOFTAD0004 |  | CCTV Networks | 4d | 2027-08-31 | 2027-09-04 | TAEXCCCC030004, TAEXCCCU210004, TAEXCCCU260004, TAEXCCCL100004, TAEXCCCC010004, TAEXCCCU280004, TAEXCCCL020004, TAEXCCCL030004, TAEXCCCL040004, TAEXCCCL050004, TAEXCCCC020004, TAEXCCCU200004, TAEXCCCU320004, TAEXCCCU330004, TAEXCCCU120004, TAEXCCCL010004, TAEXCCCL060004, TAEXCCCL070004, TAEXCCCL080004, TAEXCCCL090004, TAEXCCCU290004, TAEXCCCU140004, TAEXCCCU060004, TAEXCCCU070004, TAEXCCCU080004, TAEXCCCU090004 FF, TAEXCCCU180004 | -16.27d | 0d | ELECTRACIAN [32 h]; LABOR [32 h]; COST [8200] | 8,200 |
| TACOFTAD0003 |  | Telecommunications Networks | 7d | 2027-09-01 | 2027-09-08 | TAEXTCCC020004, TAEXTCCC030004, TAEXTCCU210004, TAEXTCCL100004, TAEXTCCC010004, TAEXTCCU280004, TAEXTCCL020004, TAEXTCCL030004, TAEXTCCL040004, TAEXTCCL050004, TAEXTCCU330004, TAEXTCCU120004, TAEXTCCL010004, TAEXTCCL060004, TAEXTCCL070004, TAEXTCCL080004, TAEXTCCL090004, TAEXTCCU290004, TACOFTFT0019 | -20.27d | 0d | ELECTRACIAN [56 h]; LABOR [56 h]; COST [9000] | 9,000 |
| TACOFTAD0002 |  | Electrical NetWorks | 6d | 2027-09-12 | 2027-09-19 | TAEXELCC020008, TAEXELCC030008, TAEXELCU210009, TAEXELCU260008, TAEXELCL100009, TAEXELCC010008, TAEXELCU280008, TAEXELCL020008, TAEXELCL030008, TAEXELCL040009, TAEXELCL050008, TAEXELCU200009, TAEXELCU320008, TAEXELCU330008, TAEXELCU120008, TAEXELCL010008, TAEXELCL060008, TAEXELCL070008, TAEXELCL080009, TAEXELCL090008, TAEXELCU290008, TAEXELCU140008, TAEXELCU060008, TAEXELCU070008, TAEXELCU080008, TAEXELCU090008, TACOFTFT0018 | -29.3d | 0d | ELECTRACIAN [48 h]; LABOR [48 h]; COST [12000] | 12,000 |
|  | 2 | **AS BUILT DRAWINGS Zone 2** |  | 2027-03-09 | 2027-09-19 |  |  |  |  |  |
| TACOFTAD0015 |  | Sewerage Networks | 15d | 2027-03-09 | 2027-03-27 | TACOFTAD0007 FF | 122.71d | 0d | COST [33450] | 33,450 |
| TACOFTAD0013 |  | Potable Water Networks | 10d | 2027-05-24 | 2027-06-05 | TACOFTAD0005 FF | 62.04d | 0d | COST [24750] | 24,750 |
| TACOFTAD0014 |  | TSE Networks | 10d | 2027-06-06 | 2027-06-17 | TACOFTAD0006 FF | 51.42d | 0d | COST [23250] | 23,250 |
| TACOFTAD0016 |  | Storm Water Drainage Networks | 15d | 2027-07-26 | 2027-08-12 | TACOFTAD0008 FF | 3.97d | 0d | COST [38220] | 38,220 |
| TACOFTAD0009 |  | Road Works | 3d | 2027-08-08 | 2027-08-11 | TACOFTAD0001, TAEXRDCC010012, TAEXRDCU280006, TAEXRDC L020012, TAEXRDCL030012, TAEXRDCL040012, TAEXRDCL050012 | 1.84d | 0d | COST [18000] | 18,000 |
| TACOFTAD0012 |  | CCTV Networks | 4d | 2027-08-31 | 2027-09-04 | TACOFTAD0004 FF | -16.27d | 0d | COST [12300] | 12,300 |
| TACOFTAD0011 |  | Telecommunications Networks | 7d | 2027-09-01 | 2027-09-08 | TACOFTAD0003 FF | -20.27d | 0d | COST [13500] | 13,500 |
| TACOFTAD0010 |  | Electrical NetWorks | 7d | 2027-09-11 | 2027-09-19 | TACOFTAD0002 FF | -29.3d | 0d | COST [18000] | 18,000 |
|  | 3 | **AS BUILT DRAWINGS Zone 3** |  | 2027-03-15 | 2027-09-19 |  |  |  |  |  |
| TACOFTAD0023 |  | Sewerage Networks | 10d | 2027-03-15 | 2027-03-27 | TACOFTAD0015 FF | 122.71d | 0d | COST [33450] | 33,450 |
| TACOFTAD0021 |  | Potable Water Networks | 10d | 2027-05-24 | 2027-06-05 | TACOFTAD0013 FF | 62.04d | 91.34d | COST [24750] | 24,750 |
| TACOFTAD0022 |  | TSE Networks | 10d | 2027-06-06 | 2027-06-17 | TACOFTAD0014 FF | 51.42d | 80.72d | COST [23250] | 23,250 |
| TACOFTAD0024 |  | Storm Water Drainage Networks | 10d | 2027-08-01 | 2027-08-12 | TACOFTAD0016 FF | 3.97d | 0d | COST [38220] | 38,220 |
| TACOFTAD0017 |  | Road Works | 3d | 2027-08-11 | 2027-08-15 | TACOFTAD0009, TAEXRDCL010012, TAEXRDCL060012, TAEXRDCL070012, TAEXRDCL080012, TAEXRDCL090012, TAEXRDCU120006, TAEXRDCU290009, TAEXRDCU330006 | 1.84d | 31.14d | COST [18000] | 18,000 |
| TACOFTAD0020 |  | CCTV Networks | 5d | 2027-08-30 | 2027-09-04 | TACOFTAD0012 FF | -16.27d | 13.03d | COST [12300] | 12,300 |
| TACOFTAD0019 |  | Telecommunications Networks | 7d | 2027-09-01 | 2027-09-08 | TACOFTAD0011 FF | -20.27d | 0d | COST [13500] | 13,500 |
| TACOFTAD0018 |  | Electrical NetWorks | 7d | 2027-09-11 | 2027-09-19 | TACOFTAD0010 FF | -29.3d | 0d | COST [18000] | 18,000 |

| ID | WBS | Activity | Type | Duration | Start | Finish | Predecessors | Total float | Free float | Resources |
| --- | --- | --- | --- | --- | --- | --- | --- | --- | --- | --- |
|  | 1 | **DEMOBILIZATION** |  |  | 2027-09-19 | 2027-10-07 |  |  |  |  |
| TAPCDZ00000001 |  | Demobilization Manpower |  | 6d | 2027-09-19 | 2027-09-26 | TACOFTAD0001 FF, TACOFTAD0002, TACOFTAD0003, TACOFTAD0004, TACOFTAD0005, TACOFTAD0006, TACOFTAD0007, TACOFTAD0008, TACOFTFT0002, TACOFTFT0003, TACOFTFT0004 FF, TACOFTFT0005 FF, TACOFTFT0006 FF, TACOFTFT0007 FF, TACOFTFT0008 FF, TACOFTFT0024 FF+2d, TACOFTAD0016, TACOFTAD0024, TACOFTAD0017, TACOFTAD0018, TACOFTAD0019, TACOFTAD0020, TACOFTAD0021, TACOFTAD0022, TACOFTAD0023, TAGNZM0002 SS, TAGNZM0003 SS | -29.3d | 0d |  |
| TAPCDZ00000002 |  | Remove Offices and Structures |  | 5d | 2027-09-26 | 2027-10-02 | TAPCDZ00000001, TAGNMZ9 | -29.3d | 0d | EXCAVATOR [64 h]; LABOR [124 h]; EXCAVATOR OPERATOR [64 h] |
| TAPCDZ00000022 |  | Restore Ground Surfaces |  | 6d | 2027-09-30 | 2027-10-07 | TAPCDZ00000012 FF | -29.3d | 0d | ROLEER [44 h]; DUMP TRUCK [88 h]; WATER TANKER [44 h]; GRADER [44 h]; LABOR [88 h]; GRADER OPERATOR [44 h]; DUMP TRUCK DRIVER [88 h]; WATER TANKER DRIVER [44 h]; ROLLER OPERATOR [44 h] |
| TAPCDZ00000012 |  | Demobilize Equipment from Site |  | 5d | 2027-10-02 | 2027-10-07 | TAPCDZ00000002, TAPCDZ00000002 FF | -29.3d | 0d |  |
| TAPCDZ00000032 |  | Final Handover | milestone | 0d | 2027-10-07 | 2027-10-07 | TAPCDZ00000022 FF | -29.3d | 0d |  |
