# Development of Phase One – Part Two – Third Industrial City in Dammam - 10-Nov-26

Schedule from Primavera P6, 2025-05-19 to 2027-11-03, data date 2026-11-07, costs in USD, A marks actual dates.
Must finish by 2027-05-18

## Calendars

- MOD- 6D: Mon-Thu 07:00-12:00, 13:00-18:00; Fri off; Sat-Sun 07:00-12:00, 13:00-18:00. Exceptions (off unless hours are given): 2025-06-05, 2025-06-07 to 2025-06-10, 2025-09-23, 2026-02-16 to 2026-02-19 07:00-10:00, 15:00-18:00, 2026-02-21 07:00-10:00, 15:00-18:00, 2026-02-22, 2026-02-23 to 2026-02-26 07:00-10:00, 15:00-18:00, 2026-02-28 to 2026-03-05 07:00-10:00, 15:00-18:00, 2026-03-07 to 2026-03-12 07:00-10:00, 15:00-18:00, 2026-03-14 to 2026-03-19 07:00-10:00, 15:00-18:00, 2026-03-21 to 2026-03-24, 2026-05-27 to 2026-05-28, 2026-05-30 to 2026-05-31, 2026-09-23, 2027-02-07 to 2027-02-11 07:00-10:00, 15:00-18:00, 2027-02-13 to 2027-02-18 07:00-10:00, 15:00-18:00, 2027-02-20 to 2027-02-21 07:00-10:00, 15:00-18:00, 2027-02-22, 2027-02-23 to 2027-02-25 07:00-10:00, 15:00-18:00, 2027-02-27 to 2027-03-04 07:00-10:00, 15:00-18:00, 2027-03-06 to 2027-03-09 07:00-10:00, 15:00-18:00, 2027-03-10 to 2027-03-11, 2027-03-13 to 2027-03-14, 2027-05-13, 2027-05-15 to 2027-05-17, 2027-09-23.
- 7-Day Workweek-9: Mon-Sun 08:00-18:00.
- MOD-5D: Mon-Thu 07:00-12:00, 13:00-18:00; Fri-Sat off; Sun 07:00-12:00, 13:00-18:00. Exceptions (off unless hours are given): 2026-02-16 to 2026-02-19 07:00-11:00, 14:00-18:00, 2026-02-22 to 2026-02-26 07:00-11:00, 14:00-18:00, 2026-03-01 to 2026-03-05 07:00-11:00, 14:00-18:00, 2026-03-08 to 2026-03-12 07:00-11:00, 14:00-18:00, 2026-03-15 to 2026-03-19 07:00-11:00, 14:00-18:00, 2026-03-22 to 2026-03-24, 2026-05-27 to 2026-05-28, 2026-05-31, 2027-02-07 to 2027-02-11 07:00-11:00, 14:00-18:00, 2027-02-14 to 2027-02-18 07:00-11:00, 14:00-18:00, 2027-02-21 to 2027-02-25 07:00-11:00, 14:00-18:00, 2027-02-28 to 2027-03-04 07:00-11:00, 14:00-18:00, 2027-03-07 to 2027-03-09 07:00-11:00, 14:00-18:00, 2027-03-10 to 2027-03-11, 2027-03-14, 2027-05-13, 2027-05-16 to 2027-05-17.
- MOD- 7D: Mon-Sun 07:00-11:00, 14:00-18:00.

## Resources

| Resource | Group | Rate | Notes |
| --- | --- | --- | --- |
| Contract Price Original Scope | material | 1 | ï»¿ |
| Excavator Operator | equipment |  |  |
| Laborer | labor |  | ï»¿ |
| Grader Operator | equipment |  | ï»¿ |
| Mason | labor |  | ï»¿ |
| Crane Operator | equipment |  | ï»¿ |
| Paver Operator | equipment |  | ï»¿ |
| Compactor Operator | equipment |  | ï»¿ |
| Carpenter | labor |  | ï»¿ |
| Technician | labor |  | ï»¿ |
| Pipefitter | labor |  | ï»¿ |
| Pump Operator | equipment |  | ï»¿ |
| Surveyor | labor |  | ï»¿ |
| Welder | labor |  | ï»¿ |
| Painter | labor |  | ï»¿ |
| Electrician | labor |  | ï»¿ |
| Plumber | labor |  | ï»¿ |
| Mechanical Technician | labor |  | ï»¿ |
| Steel Fixer | labor |  | ï»¿ |
| Boom Truck Operator | equipment |  | ï»¿ |
| Flaggers | labor |  | ï»¿ |
| Dump Truck Operator | equipment |  |  |
| Equipment Operator | equipment |  | ï»¿ |
| Waterproofing Specialist | labor |  | ï»¿ |
| Concrete Finisher | labor |  | ï»¿ |
| Dozer Operator | equipment |  |  |
| Road Cutter Operator | equipment |  | ï»¿ |
| Landscaper | labor |  | ï»¿ |
| Water Truck Operator | equipment |  | ï»¿ |
| Mechanic | labor |  | ï»¿ |
| Rigger | labor |  | ï»¿ |

## Schedule

| ID | WBS | Activity | Type | Duration | Start | Finish | Predecessors | Complete | Remaining | Planned start | Planned finish | Total float | Free float | Constraint | Calendar | Activity Code | Activity Code1 | Planned % Upto date |
| --- | --- | --- | --- | --- | --- | --- | --- | --- | --- | --- | --- | --- | --- | --- | --- | --- | --- | --- |
|  | 1 | **Milestones** |  |  | 2025-05-19 | 2027-11-03 |  |  |  |  |  |  |  |  |  |  |  |  |
| MIL-0001 |  | Site Handover | milestone | 0d | 2025-05-19 A | 2025-05-19 A |  | 100% |  |  |  |  |  |  | MOD- 7D |  |  |  |
| MIL-0002 |  | Site Preparations | milestone | 0d | 2025-06-17 A | 2025-06-17 A | MOD-GEI-SF-001 | 100% |  |  |  |  |  |  | MOD- 7D |  |  |  |
| MIL-0003 |  | Submission of Report, Work Plan, and Schedule | milestone | 0d | 2026-11-07 | 2026-11-07 | S100146, A1070, A1080 |  |  |  |  | 193d | 361.38d |  | MOD- 7D |  |  |  |
| MIL-0004 |  | Submission and Approval of Drawings and Specifications | milestone | 0d | 2026-11-12 | 2026-11-12 | A1600, A1610, A1630, A1640, A1650 |  |  |  |  | -196d | 355.38d | finish on 2026-04-30 | MOD- 7D |  |  |  |
| MIL-0006 |  | Completion of Rainwater Drainage Works | milestone | 0d | 2026-12-31 | 2026-12-31 | MOD-RWN-PL-233, MOD-RWN-PL-243, MOD-RWN-PL-253, MOD-RWN-PL-263, MOD-RWN-PL-283, MOD-RWN-PL-293, MOD-RWN-PL-313, MOD-RWN-PL-323, MOD-RWN-PL-333, MOD-RWN-PL-343, MOD-RWN-PL-344, MOD-RWN-PL-353, MOD-RWN-PL-373, MOD-RWN-PL-383, MOD-RWN-PL-393, MOD-RWN-PL-403, MOD-RWN-PL-413, MOD-RWN-PL-723, MOD-RWN-PC-234, MOD-RWN-PC-244, MOD-RWN-PC-254, MOD-RWN-PC-264, MOD-RWN-PC-274, MOD-RWN-PC-284, MOD-RWN-PC-294, MOD-RWN-PC-304, MOD-RWN-PC-314, MOD-RWN-PC-444, MOD-RWN-PC-454, MOD-RWN-PC-464, MOD-RWN-PC-324, MOD-RWN-PC-334, MOD-RWN-PC-344, MOD-RWN-PC-354, MOD-RWN-PC-364, MOD-RWN-PC-374, MOD-RWN-PC-384, MOD-RWN-PC-394, MOD-RWN-PC-404, MOD-RWN-PC-414, MOD-RWN-PC-424, MOD-RWN-PC-434, MOD-RWN-MH-234, MOD-RWN-MH-244, MOD-RWN-MH-254, MOD-RWN-MH-264, MOD-RWN-MH-274, MOD-RWN-MH-284, MOD-RWN-MH-294, MOD-RWN-MH-374, MOD-RWN-MH-384, MOD-RWN-MH-394, MOD-RWN-MH-404, MOD-RWN-MH-414, MOD-RWN-MH-424, MOD-RWN-MH-434, MOD-RWN-MH-304, MOD-RWN-MH-314, MOD-RWN-MH-324, MOD-RWN-MH-334, MOD-RWN-MH-344, MOD-RWN-MH-354, MOD-RWN-MH-364, MOD-RWN-CC-168, MOD-RWN-CC-178, MOD-RWN-CC-188, MOD-RWN-CC-198, MOD-RWN-CC-208, MOD-RWN-CC-218, MOD-RWN-CC-228, MOD-RWN-CC-238, MOD-RWN-CC-248, MOD-RWN-CC-258, MOD-RWN-CC-268, MOD-RWN-CC-278, MOD-RWN-CC-288, MOD-RWN-CC-298, MOD-RWN-CC-308, MOD-RWN-GO-101, MOD-RWN-GO-111, MOD-RWN-GO-121, MOD-RWN-GO-131, MOD-RWN-GO-141, MOD-RWN-GO-151, MOD-RWN-GO-161, MOD-RWN-GO-171, MOD-RWN-GO-181, MOD-RWN-BB-112, MOD-RWN-BB-122, MOD-RWN-BB-132, MOD-RWN-BB-142, MOD-RWN-BB-152, MOD-RWN-BB-162, MOD-RWN-BB-172, MOD-RWN-BB-182, MOD-RWN-BB-192, MOD-RWN-BB-202, MOD-RWN-DB-001, MOD-RWN-DB-002, MOD-RWN-DB-003, MOD-RWN-DB-004, MOD-RWN-DB-005, MOD-RWN-DB-006, MOD-RWN-PL-733, MOD-RWN-PL-743, MOD-RWN-PL-753, MOD-RWN-PL-763, MOD-RWN-PL-773, MOD-RWN-PL-783, MOD-RWN-PL-793, MOD-RWN-PL-803, MOD-RWN-PL-813, MOD-RWN-PL-823, MOD-RWN-PL-833, MOD-RWN-PL-893, MOD-RWN-PL-843, MOD-RWN-PL-853, MOD-RWN-PL-863, MOD-RWN-PL-873, MOD-RWN-PL-883, MOD-RWN-PL-903, MOD-RWN-PC-104, MOD-RWN-PC-24, MOD-RWN-PC-34, MOD-RWN-PC-44, MOD-RWN-PC-474, MOD-RWN-PC-484, MOD-RWN-PC-494, MOD-RWN-PC-54, MOD-RWN-PC-64, MOD-RWN-PC-74, MOD-RWN-PC-84, MOD-RWN-PC-94, MOD-RWN-PC-114, MOD-RWN-PC-124, MOD-RWN-PC-134, MOD-RWN-PC-144, MOD-RWN-PC-154, MOD-RWN-PC-164, MOD-RWN-PC-174, MOD-RWN-PC-184, MOD-RWN-PC-194, MOD-RWN-PC-204, MOD-RWN-PC-214, MOD-RWN-PC-224, MOD-RWN-MH-24, MOD-RWN-MH-34, MOD-RWN-MH-44, MOD-RWN-MH-54, MOD-RWN-MH-64, MOD-RWN-MH-74, MOD-RWN-MH-84, MOD-RWN-MH-164, MOD-RWN-MH-174, MOD-RWN-MH-184, MOD-RWN-MH-194, MOD-RWN-MH-204, MOD-RWN-MH-214, MOD-RWN-MH-224, MOD-RWN-MH-104, MOD-RWN-MH-114, MOD-RWN-MH-124, MOD-RWN-MH-134, MOD-RWN-MH-144, MOD-RWN-MH-154, MOD-RWN-MH-94, MOD-RWN-CC-18, MOD-RWN-CC-28, MOD-RWN-CC-38, MOD-RWN-CC-48, MOD-RWN-CC-58, MOD-RWN-CC-108, MOD-RWN-CC-68, MOD-RWN-CC-78, MOD-RWN-CC-88, MOD-RWN-CC-98, MOD-RWN-CC-118, MOD-RWN-CC-128, MOD-RWN-CC-138, MOD-RWN-CC-148, MOD-RWN-CC-158, MOD-RWN-GO-11, MOD-RWN-GO-21, MOD-RWN-GO-31, MOD-RWN-GO-41, MOD-RWN-GO-51, MOD-RWN-GO-61, MOD-RWN-GO-71, MOD-RWN-GO-81, MOD-RWN-GO-91, MOD-RWN-BB-12, MOD-RWN-BB-22, MOD-RWN-BB-32, MOD-RWN-BB-42, MOD-RWN-BB-52, MOD-RWN-BB-102, MOD-RWN-BB-62, MOD-RWN-BB-72, MOD-RWN-BB-82, MOD-RWN-BB-92, MOD-RWN-PL-913, MOD-RWN-PL-923, MOD-RWN-PL-933, MOD-RWN-PL-943, MOD-RWN-PL-953, MOD-RWN-PL-963, MOD-RWN-PL-1003, MOD-RWN-PL-1013, MOD-RWN-PL-1073, MOD-RWN-PL-973, MOD-RWN-PL-983, MOD-RWN-PL-993, MOD-RWN-PL-1023, MOD-RWN-PL-1033, MOD-RWN-PL-1043, MOD-RWN-PL-1053, MOD-RWN-PL-1063, MOD-RWN-PL-1083, MOD-RWN-PC-002, MOD-RWN-PC-003, MOD-RWN-PC-004, MOD-RWN-PC-005, MOD-RWN-PC-006, MOD-RWN-PC-007, MOD-RWN-PC-008, MOD-RWN-PC-009, MOD-RWN-PC-010, MOD-RWN-PC-504, MOD-RWN-PC-514, MOD-RWN-PC-524, MOD-RWN-PC-012, MOD-RWN-PC-013, MOD-RWN-PC-014, MOD-RWN-PC-015, MOD-RWN-PC-016, MOD-RWN-PC-018, MOD-RWN-PC-019, MOD-RWN-PC-020, MOD-RWN-PC-021, MOD-RWN-PC-022, MOD-RWN-PC-023, MOD-RWN-PC-024, MOD-RWN-MH-002, MOD-RWN-MH-003, MOD-RWN-MH-004, MOD-RWN-MH-005, MOD-RWN-MH-006, MOD-RWN-MH-007, MOD-RWN-MH-008, MOD-RWN-MH-018, MOD-RWN-MH-019, MOD-RWN-MH-020, MOD-RWN-MH-021, MOD-RWN-MH-022, MOD-RWN-MH-023, MOD-RWN-MH-024, MOD-RWN-MH-010, MOD-RWN-MH-011, MOD-RWN-MH-012, MOD-RWN-MH-013, MOD-RWN-MH-014, MOD-RWN-MH-015, MOD-RWN-MH-016, MOD-RWN-CC-002, MOD-RWN-CC-003, MOD-RWN-CC-004, MOD-RWN-CC-005, MOD-RWN-CC-006, MOD-RWN-CC-008, MOD-RWN-CC-009, MOD-RWN-CC-010, MOD-RWN-CC-011, MOD-RWN-CC-012, MOD-RWN-CC-014, MOD-RWN-CC-015, MOD-RWN-CC-016, MOD-RWN-CC-017, MOD-RWN-CC-018, MOD-RWN-GO-002, MOD-RWN-GO-003, MOD-RWN-GO-004, MOD-RWN-GO-005, MOD-RWN-GO-006, MOD-RWN-GO-008, MOD-RWN-GO-009, MOD-RWN-GO-010, MOD-RWN-GO-011, MOD-RWN-BB-002, MOD-RWN-BB-003, MOD-RWN-BB-004, MOD-RWN-BB-005, MOD-RWN-BB-006, MOD-RWN-BB-008, MOD-RWN-BB-009, MOD-RWN-BB-010, MOD-RWN-BB-011, MOD-RWN-BB-012 |  |  |  |  | -157.57d | 0d | finish on 2026-12-31 | MOD- 7D |  |  |  |
| MIL-0005 |  | Completion of Water Networks and Tanks | milestone | 0d | 2027-01-26 | 2027-01-26 | S100026, S100036, S100046, S100056, S100066, S100076, S100086, S100096, S100106, S100116, S100126, S100136, S100146, S100156, S100166, S100176, MOD-PWN-PI-313, MOD-PWN-PI-323, MOD-PWN-PI-333, MOD-PWN-PI-343, MOD-PWN-PI-353, MOD-PWN-PI-363, MOD-PWN-VC-107, MOD-PWN-VC-117, MOD-PWN-VC-127, MOD-PWN-VC-137, MOD-PWN-VC-77, MOD-PWN-VC-87, MOD-PWN-VC-97, MOD-PWN-FM-55, MOD-PWN-FM-65, MOD-PWN-FM-75, MOD-PWN-FM-85, MOD-PWN-FM-95, MOD-PWN-WA-107, MOD-PWN-WA-117, MOD-PWN-WA-127, MOD-PWN-WA-137, MOD-PWN-WA-77, MOD-PWN-WA-87, MOD-PWN-WA-97, MOD-PWN-PS-106, MOD-PWN-PS-116, MOD-PWN-PS-66, MOD-PWN-PS-76, MOD-PWN-PS-86, MOD-PWN-PS-96, MOD-PWN-PB-33, MOD-PWN-PB-43, MOD-PWN-PB-53, MOD-PWN-PE-108, MOD-PWN-PE-118, MOD-PWN-PE-128, MOD-PWN-PE-138, MOD-PWN-PE-148, MOD-PWN-PE-158, MOD-PWN-PE-88, MOD-PWN-PE-98, MOD-PWN-SP-22, MOD-PWN-SP-32, MOD-PWN-PG-44, MOD-PWN-PG-54, MOD-PWN-PG-64, MOD-PWN-PG-74, MOD-PWN-CS-33, MOD-PWN-CS-43, MOD-PWN-CS-53, MOD-PWN-WS-11, MOD-PWN-SL-55, MOD-PWN-SL-65, MOD-PWN-SL-75, MOD-PWN-SL-85, MOD-PWN-SL-95, MOD-IRN-EB-120, MOD-IRN-EB-130, MOD-IRN-EB-140, MOD-IRN-EB-150, MOD-IRN-EB-180, MOD-IRN-EB-190, MOD-IRN-VA-55, MOD-IRN-VA-65, MOD-IRN-VA-75, MOD-IRN-VA-85, MOD-IRN-VA-95, MOD-IRN-VR-107, MOD-IRN-VR-117, MOD-IRN-VR-127, MOD-IRN-VR-137, MOD-IRN-VR-77, MOD-IRN-VR-87, MOD-IRN-VR-97, MOD-IRN-WC-106, MOD-IRN-WC-116, MOD-IRN-WC-66, MOD-IRN-WC-76, MOD-IRN-WC-86, MOD-IRN-WC-96, MOD-IRN-AC-55, MOD-IRN-AC-65, MOD-IRN-AC-75, MOD-IRN-AC-85, MOD-IRN-AC-95, MOD-IRN-FC-106, MOD-IRN-FC-116, MOD-IRN-FC-66, MOD-IRN-FC-76, MOD-IRN-FC-86, MOD-IRN-FC-96, MOD-PWN-PI-143, MOD-PWN-PI-153, MOD-PWN-PI-163, MOD-PWN-PI-173, MOD-PWN-PI-203, MOD-PWN-PI-213, MOD-PWN-VC-17, MOD-PWN-VC-27, MOD-PWN-VC-37, MOD-PWN-VC-47, MOD-PWN-VC-57, MOD-PWN-VC-67, MOD-PWN-VC-7, MOD-PWN-FM-15, MOD-PWN-FM-25, MOD-PWN-FM-35, MOD-PWN-FM-45, MOD-PWN-FM-5, MOD-PWN-WA-17, MOD-PWN-WA-27, MOD-PWN-WA-37, MOD-PWN-WA-47, MOD-PWN-WA-57, MOD-PWN-WA-67, MOD-PWN-WA-7, MOD-IRN-EB-330, MOD-IRN-EB-340, MOD-IRN-EB-350, MOD-IRN-EB-360, MOD-IRN-EB-370, MOD-IRN-EB-380, MOD-IRN-VA-15, MOD-IRN-VA-25, MOD-IRN-VA-35, MOD-IRN-VA-45, MOD-IRN-VA-5, MOD-IRN-VR-17, MOD-IRN-VR-27, MOD-IRN-VR-37, MOD-IRN-VR-47, MOD-IRN-VR-57, MOD-IRN-VR-67, MOD-IRN-VR-7, MOD-IRN-WC-16, MOD-IRN-WC-26, MOD-IRN-WC-36, MOD-IRN-WC-46, MOD-IRN-WC-56, MOD-IRN-WC-6, MOD-IRN-AC-15, MOD-IRN-AC-25, MOD-IRN-AC-35, MOD-IRN-AC-45, MOD-IRN-AC-5, MOD-IRN-FC-16, MOD-IRN-FC-26, MOD-IRN-FC-36, MOD-IRN-FC-46, MOD-IRN-FC-56, MOD-IRN-FC-6, MOD-PWN-PI-373, MOD-PWN-PI-383, MOD-PWN-PI-393, MOD-PWN-PI-403, MOD-PWN-PI-413, MOD-PWN-PI-423, MOD-PWN-VC-001, MOD-PWN-VC-002, MOD-PWN-VC-003, MOD-PWN-VC-004, MOD-PWN-VC-005, MOD-PWN-VC-006, MOD-PWN-VC-007, MOD-PWN-FM-001, MOD-PWN-FM-002, MOD-PWN-FM-003, MOD-PWN-FM-004, MOD-PWN-FM-005, MOD-PWN-WA-001, MOD-PWN-WA-002, MOD-PWN-WA-003, MOD-PWN-WA-004, MOD-PWN-WA-005, MOD-PWN-WA-006, MOD-PWN-WA-007, MOD-IRN-EB-390, MOD-IRN-EB-400, MOD-IRN-EB-410, MOD-IRN-EB-420, MOD-IRN-EB-430, MOD-IRN-EB-440, MOD-IRN-VA-001, MOD-IRN-VA-002, MOD-IRN-VA-003, MOD-IRN-VA-004, MOD-IRN-VA-005, MOD-IRN-VR-001, MOD-IRN-VR-002, MOD-IRN-VR-003, MOD-IRN-VR-004, MOD-IRN-VR-005, MOD-IRN-VR-006, MOD-IRN-VR-007, MOD-IRN-WC-001, MOD-IRN-WC-002, MOD-IRN-WC-003, MOD-IRN-WC-004, MOD-IRN-WC-005, MOD-IRN-WC-006, MOD-IRN-AC-001, MOD-IRN-AC-002, MOD-IRN-AC-003, MOD-IRN-AC-004, MOD-IRN-AC-005, MOD-IRN-FC-001, MOD-IRN-FC-002, MOD-IRN-FC-003, MOD-IRN-FC-004, MOD-IRN-FC-005, MOD-IRN-FC-006 |  |  |  |  | -26.5d | 280.38d | finish on 2026-12-31 | MOD- 7D |  |  |  |
| MIL-0007 |  | Completion of All Project Services | milestone | 0d | 2027-10-19 | 2027-10-19 | MOD-SWN-PW-265, MOD-SWN-PW-295, MOD-SWN-PW-305, MOD-SWN-PW-315, MOD-SWN-PW-325, MOD-SWN-PW-335, MOD-SWN-PW-275, MOD-SWN-PW-345, MOD-SWN-PW-355, MOD-SWN-PW-365, MOD-SWN-PW-375, MOD-SWN-PW-385, MOD-SWN-PW-285, MOD-SWN-PW-395, MOD-SWN-PW-405, MOD-SWN-PW-415, MOD-SWN-PW-425, MOD-SWN-PW-435, MOD-SWN-FV-55, MOD-SWN-FV-65, MOD-SWN-FV-75, MOD-SWN-FV-85, MOD-SWN-FV-95, MOD-SWN-PW-805, MOD-SWN-PW-815, MOD-SWN-PW-825, MOD-SWN-PW-835, MOD-SWN-VF-84, MOD-SWN-PW-845, MOD-SWN-PW-855, MOD-SWN-PW-865, MOD-SWN-PW-875, MOD-SWN-VF-94, MOD-SWN-PW-885, MOD-SWN-PW-895, MOD-SWN-PW-905, MOD-SWN-PW-915, MOD-SWN-VF-104, MOD-SWN-PW-925, MOD-SWN-PW-935, MOD-SWN-PW-945, MOD-SWN-PW-955, MOD-SWN-VF-114, MOD-SWN-MH-95, MOD-SWN-MH-185, MOD-SWN-PW-1605, MOD-SWN-PW-1615, MOD-SWN-PW-1625, MOD-SWN-PW-1635, MOD-SWN-MH-195, MOD-SWN-PW-1645, MOD-SWN-PW-1655, MOD-SWN-PW-1665, MOD-SWN-PW-1675, MOD-SWN-MH-205, MOD-SWN-PW-1685, MOD-SWN-PW-1695, MOD-SWN-PW-1705, MOD-SWN-PW-1715, MOD-SWN-MH-215, MOD-SWN-PW-1725, MOD-SWN-PW-1735, MOD-SWN-PW-1745, MOD-SWN-PW-1755, MOD-SWN-PS-1004, MOD-SWN-PS-1014, MOD-SWN-PS-984, MOD-SWN-PS-994, MOD-SWN-PS-644, MOD-SWN-PS-654, MOD-SWN-PS-1124, MOD-SWN-PS-1134, MOD-SWN-PS-1144, MOD-SWN-PS-1154, MOD-SWN-PS-674, MOD-SWN-PS-934, MOD-SWN-PS-944, MOD-SWN-PS-714, MOD-SWN-PS-724, MOD-SWN-PS-734, MOD-SWN-PS-754, MOD-SWN-PS-844, MOD-SWN-PS-854, MOD-SWN-PS-864, MOD-SWN-PS-874, MOD-SWN-PS-884, MOD-SWN-PS-894, MOD-SWN-PS-904, MOD-SWN-PS-954, MOD-SWN-PS-1024, MOD-SWN-PS-1034, MOD-SWN-PS-1044, MOD-SWN-PS-1054, MOD-SWN-PS-1064, MOD-SWN-PS-1074, MOD-SWN-PS-1084, MOD-SWN-PS-1094, MOD-SWN-PS-1104, MOD-RCP-ER-108, MOD-RCP-ER-118, MOD-RCP-ER-128, MOD-RCP-ER-138, MOD-RCP-ER-78, MOD-RCP-ER-88, MOD-RCP-ER-98, MOD-RCP-GS-123, MOD-RCP-GS-133, MOD-RCP-GS-183, MOD-RCP-GS-193, MOD-RCP-BW-55, MOD-RCP-BW-65, MOD-RCP-BW-75, MOD-RCP-BW-85, MOD-RCP-BW-95, MOD-RCP-GB-45, MOD-RCP-GB-55, MOD-RCP-GB-65, MOD-RCP-GB-75, MOD-RCP-CS-100, MOD-RCP-CS-110, MOD-RCP-CS-120, MOD-RCP-CS-130, MOD-RCP-CS-140, MOD-RCP-CS-150, MOD-RCP-CS-160, MOD-RCP-CS-170, MOD-RCP-CS-180, MOD-RCP-ED-108, MOD-RCP-ED-118, MOD-RCP-ED-128, MOD-RCP-ED-138, MOD-RCP-ED-78, MOD-RCP-ED-88, MOD-RCP-ED-98, MOD-ROC-PV-002, MOD-ROC-PV-003, MOD-ROC-PV-004, MOD-ROC-PV-005, MOD-ROC-PV-006, MOD-ROC-PV-007, MOD-ROC-PV-008, MOD-ROC-PV-009, MOD-ROC-PV-010, MOD-ROC-GR-002, MOD-ROC-GR-003, MOD-ROC-GR-004, MOD-ROC-GR-005, MOD-ROC-GR-006, MOD-ROC-GR-007, MOD-ROC-GR-008, MOD-ROC-GR-009, MOD-ROC-GR-010, MOD-SWN-PW-445, MOD-SWN-PW-475, MOD-SWN-PW-485, MOD-SWN-PW-495, MOD-SWN-PW-505, MOD-SWN-PW-515, MOD-SWN-PW-455, MOD-SWN-PW-525, MOD-SWN-PW-535, MOD-SWN-PW-545, MOD-SWN-PW-555, MOD-SWN-PW-565, MOD-SWN-PW-465, MOD-SWN-PW-575, MOD-SWN-PW-585, MOD-SWN-PW-595, MOD-SWN-PW-605, MOD-SWN-PW-615, MOD-SWN-FV-15, MOD-SWN-FV-25, MOD-SWN-FV-35, MOD-SWN-FV-45, MOD-SWN-FV-5, MOD-SWN-PW-965, MOD-SWN-PW-975, MOD-SWN-PW-985, MOD-SWN-PW-995, MOD-SWN-VF-124, MOD-SWN-PW-1005, MOD-SWN-PW-1015, MOD-SWN-PW-1025, MOD-SWN-PW-1035, MOD-SWN-VF-134, MOD-SWN-PW-1045, MOD-SWN-PW-1055, MOD-SWN-PW-1065, MOD-SWN-PW-1075, MOD-SWN-VF-144, MOD-SWN-PW-1085, MOD-SWN-PW-1095, MOD-SWN-PW-1105, MOD-SWN-PW-1115, MOD-SWN-VF-154, MOD-SWN-MH-45, MOD-SWN-MH-145, MOD-SWN-PW-1445, MOD-SWN-PW-1455, MOD-SWN-PW-1465, MOD-SWN-PW-1475, MOD-SWN-MH-155, MOD-SWN-PW-1485, MOD-SWN-PW-1495, MOD-SWN-PW-1505, MOD-SWN-PW-1515, MOD-SWN-MH-165, MOD-SWN-PW-1525, MOD-SWN-PW-1535, MOD-SWN-PW-1545, MOD-SWN-PW-1555, MOD-SWN-MH-175, MOD-SWN-PW-1565, MOD-SWN-PW-1575, MOD-SWN-PW-1585, MOD-SWN-PW-1595, MOD-RCP-ER-18, MOD-RCP-ER-28, MOD-RCP-ER-38, MOD-RCP-ER-48, MOD-RCP-ER-58, MOD-RCP-ER-68, MOD-RCP-ER-8, MOD-RCP-GS-43, MOD-RCP-GS-53, MOD-RCP-GS-83, MOD-RCP-GS-93, MOD-RCP-BW-15, MOD-RCP-BW-25, MOD-RCP-BW-35, MOD-RCP-BW-45, MOD-RCP-BW-5, MOD-RCP-GB-15, MOD-RCP-GB-25, MOD-RCP-GB-35, MOD-RCP-GB-5, MOD-RCP-CS-10, MOD-RCP-CS-20, MOD-RCP-CS-30, MOD-RCP-CS-40, MOD-RCP-CS-50, MOD-RCP-CS-60, MOD-RCP-CS-70, MOD-RCP-CS-80, MOD-RCP-CS-90, MOD-RCP-ED-18, MOD-RCP-ED-28, MOD-RCP-ED-38, MOD-RCP-ED-48, MOD-RCP-ED-58, MOD-RCP-ED-68, MOD-RCP-ED-8, MOD-ROC-PV-10, MOD-ROC-PV-20, MOD-ROC-PV-30, MOD-ROC-PV-40, MOD-ROC-PV-50, MOD-ROC-PV-60, MOD-ROC-PV-70, MOD-ROC-PV-80, MOD-ROC-PV-90, MOD-ROC-GR-10, MOD-ROC-GR-20, MOD-ROC-GR-30, MOD-ROC-GR-40, MOD-ROC-GR-50, MOD-ROC-GR-60, MOD-ROC-GR-70, MOD-ROC-GR-80, MOD-ROC-GR-90, MOD-SWN-PW-625, MOD-SWN-PW-655, MOD-SWN-PW-665, MOD-SWN-PW-675, MOD-SWN-PW-685, MOD-SWN-PW-695, MOD-SWN-PW-635, MOD-SWN-PW-705, MOD-SWN-PW-715, MOD-SWN-PW-725, MOD-SWN-PW-735, MOD-SWN-PW-745, MOD-SWN-PW-645, MOD-SWN-PW-755, MOD-SWN-PW-765, MOD-SWN-PW-775, MOD-SWN-PW-785, MOD-SWN-PW-795, MOD-SWN-FV-001, MOD-SWN-FV-002, MOD-SWN-FV-003, MOD-SWN-FV-004, MOD-SWN-FV-005, MOD-SWN-PW-1125, MOD-SWN-PW-1135, MOD-SWN-PW-1145, MOD-SWN-PW-1155, MOD-SWN-VF-164, MOD-SWN-PW-1165, MOD-SWN-PW-1175, MOD-SWN-PW-1185, MOD-SWN-PW-1195, MOD-SWN-VF-174, MOD-SWN-PW-1205, MOD-SWN-PW-1215, MOD-SWN-PW-1225, MOD-SWN-PW-1235, MOD-SWN-VF-184, MOD-SWN-PW-1245, MOD-SWN-PW-1255, MOD-SWN-PW-1265, MOD-SWN-PW-1275, MOD-SWN-VF-194, MOD-SWN-MH-005, MOD-SWN-MH-105, MOD-SWN-PW-1285, MOD-SWN-PW-1295, MOD-SWN-PW-1305, MOD-SWN-PW-1315, MOD-SWN-MH-115, MOD-SWN-PW-1325, MOD-SWN-PW-1335, MOD-SWN-PW-1345, MOD-SWN-PW-1355, MOD-SWN-MH-125, MOD-SWN-PW-1365, MOD-SWN-PW-1375, MOD-SWN-PW-1385, MOD-SWN-PW-1395, MOD-SWN-MH-135, MOD-SWN-PW-1405, MOD-SWN-PW-1415, MOD-SWN-PW-1425, MOD-SWN-PW-1435, MOD-SWN-PS-045, MOD-SWN-PS-046, MOD-SWN-PS-049, MOD-SWN-PS-050, MOD-SWN-PS-002, MOD-SWN-PS-003, MOD-SWN-PS-004, MOD-SWN-PS-0081, MOD-SWN-PS-0082, MOD-SWN-PS-010, MOD-SWN-PS-1164, MOD-SWN-PS-1174, MOD-SWN-PS-038, MOD-SWN-PS-039, MOD-SWN-PS-012, MOD-SWN-PS-013, MOD-SWN-PS-014, MOD-SWN-PS-019, MOD-SWN-PS-022, MOD-SWN-PS-023, MOD-SWN-PS-024, MOD-SWN-PS-025, MOD-SWN-PS-026, MOD-SWN-PS-027, MOD-SWN-PS-028, MOD-SWN-PS-029, MOD-SWN-PS-043, MOD-SWN-PS-052, MOD-SWN-PS-054, MOD-SWN-PS-055, MOD-SWN-PS-056, MOD-SWN-PS-058, MOD-SWN-PS-059, MOD-SWN-PS-061, MOD-SWN-PS-062, MOD-SWN-PS-064, MOD-IRN-EB-390, MOD-IRN-EB-400, MOD-IRN-EB-410, MOD-IRN-EB-420, MOD-IRN-EB-430, MOD-IRN-EB-440, MOD-IRN-VA-001, MOD-IRN-VA-002, MOD-IRN-VA-003, MOD-IRN-VA-004, MOD-IRN-VA-005, MOD-IRN-VR-001, MOD-IRN-VR-002, MOD-IRN-VR-003, MOD-IRN-VR-004, MOD-IRN-VR-005, MOD-IRN-VR-006, MOD-IRN-VR-007, MOD-IRN-WC-001, MOD-IRN-WC-002, MOD-IRN-WC-003, MOD-IRN-WC-004, MOD-IRN-WC-005, MOD-IRN-WC-006, MOD-IRN-AC-001, MOD-IRN-AC-002, MOD-IRN-AC-003, MOD-IRN-AC-004, MOD-IRN-AC-005, MOD-IRN-FC-001, MOD-IRN-FC-002, MOD-IRN-FC-003, MOD-IRN-FC-004, MOD-IRN-FC-005, MOD-IRN-FC-006, MOD-ROC-PV-100, MOD-ROC-PV-110, MOD-ROC-PV-120, MOD-ROC-PV-130, MOD-ROC-PV-140, MOD-ROC-PV-150, MOD-ROC-PV-160, MOD-ROC-PV-170, MOD-ROC-PV-180, MOD-ROC-GR-100, MOD-ROC-GR-110, MOD-ROC-GR-120, MOD-ROC-GR-130, MOD-ROC-GR-140, MOD-ROC-GR-150, MOD-ROC-GR-160, MOD-ROC-GR-170, MOD-ROC-GR-180, MOD-LOR-BC-002, MOD-LOR-BC-003, MOD-LOR-BC-005, MOD-LOR-BC-007, MOD-LOR-BC-008, MOD-LOR-PC-001, MOD-LOR-PC-002, MOD-LOR-PC-003, MOD-LOR-PC-004, MOD-LOR-PC-005, MOD-ARR-EW-001, MOD-ARR-EW-002, MOD-ARR-PC-001, MOD-ARR-PC-002, MOD-ARR-PC-003, MOD-ARR-PC-004, MOD-ARR-PC-005, MOD-ARR-PC-006, MOD-COC-DW-002, MOD-COC-DW-003, MOD-COC-DW-004, MOD-COC-DW-005, MOD-COC-DW-007, MOD-COC-DW-008, MOD-COC-DW-009, MOD-COC-MH-001, MOD-COC-MH-002, MOD-COC-MH-003, MOD-COC-MH-004, MOD-LNS-PT-002, MOD-LNS-PT-003, MOD-LNS-PT-004, MOD-LNS-PT-005, MOD-LNS-PT-006, MOD-LNS-PT-007, MOD-LNS-PT-008, MOD-LNS-PT-009, MOD-LNS-PT-010, MOD-LNS-GL-002, MOD-LNS-GL-003, MOD-LNS-GL-004, MOD-LNS-GL-005, MOD-LNS-GL-006, MOD-LNS-GL-007, MOD-LNS-GL-008, MOD-LNS-LI-002, MOD-LNS-LI-003, MOD-LNS-LI-004, MOD-LNS-LI-005, MOD-LNS-LI-006, MOD-LNS-LI-007, MOD-LNS-LI-008, MOD-LNS-LI-009, MOD-RCP-AR-007, MOD-RCP-BW-005, MOD-RCP-CL-007, MOD-RCP-CS-010, MOD-RCP-GB-002, MOD-RCP-GB-003, MOD-RCP-GB-004, MOD-RCP-GB-005, MOD-RCP-CS-002, MOD-RCP-CS-003, MOD-RCP-CS-004, MOD-RCP-CS-005, MOD-RCP-CS-006, MOD-RCP-CS-007, MOD-RCP-CS-008, MOD-RCP-CS-009, MOD-RCP-CS-010 FF, MOD-RCP-ED-002, MOD-RCP-ED-003, MOD-RCP-ED-004, MOD-RCP-ED-005, MOD-RCP-ED-006, MOD-RCP-ED-007, MOD-RCP-ED-008, MOD-RCP-CL-001, MOD-RCP-CL-002, MOD-RCP-CL-003, MOD-RCP-CL-004, MOD-RCP-CL-005, MOD-RCP-CL-006, MOD-RCP-CL-007 FF, MOD-RCP-AR-002, MOD-RCP-AR-003, MOD-RCP-AR-004, MOD-RCP-AR-005, MOD-RCP-AR-006, MOD-RCP-AR-007 FF, MOD-RCP-ER-008, MOD-RCP-ER-002, MOD-RCP-ER-003, MOD-RCP-ER-004, MOD-RCP-ER-005, MOD-RCP-ER-006, MOD-RCP-ER-007, MOD-RCP-GS-0042, MOD-RCP-GS-0043 |  |  |  |  | -154d | 14.38d | finish on or before 2027-05-18 | MOD- 7D |  |  |  |
| MIL-0008 |  | Final Handover | milestone | 0d | 2027-11-03 | 2027-11-03 | A102060, HO-0001, HO-0003, MIL-0002, MIL-0003, MIL-0004, MIL-0005, MIL-0006, MIL-0007, MOD-GEI-SF-001, MOD-GEI-PL-001, A103590, A103600, A103610, A102060 FF, A103620, A103630, HO-3, HO-13, HO-23, HO-33, HO-0001 FF, A103640, A103650, A103660, A103670, A103690, A103700, A103710, A103720, A103730 |  |  |  |  | -168.38d | 0d |  | MOD- 7D |  |  |  |
|  | 2 | **Mobilization** |  |  | 2025-05-19 | 2027-01-26 |  |  |  |  |  |  |  |  |  |  |  |  |
|  | 1 | **Mobilization** |  |  | 2025-05-19 | 2025-06-25 |  |  |  |  |  |  |  |  |  |  |  |  |
| A1070 |  | Mobilization of Manpower |  | 30d | 2025-05-19 A | 2025-06-25 A | MIL-0001 | 100% |  | 2025-05-19 | 2025-06-17 |  |  |  | MOD- 7D |  |  |  |
| A1080 |  | Mobilization of Equipment |  | 30d | 2025-05-19 A | 2025-06-25 A | MIL-0001 | 100% |  | 2025-05-19 | 2025-06-17 |  |  |  | MOD- 7D |  |  |  |
|  | 8 | **Deliverables** |  |  | 2025-05-19 | 2027-01-26 |  |  |  |  |  |  |  |  |  |  |  |  |
|  | 1 | **Submittals** |  |  | 2025-05-19 | 2027-01-14 |  |  |  |  |  |  |  |  |  |  |  |  |
| S10007 |  | Prepare & Submit Performance Bond |  | 14d | 2025-05-19 A | 2025-05-19 A | MIL-0001 | 100% |  | 2025-05-19 | 2025-06-03 |  |  |  |  | WO#50-DE-SUB-7 | WO.43.DC.SUB.1060 | 1 |
| S100010 |  | Prepare & Submit Mobilization plan |  | 10d | 2025-05-19 A | 2025-07-16 A | MIL-0001 | 100% |  | 2025-05-19 | 2025-05-29 |  |  |  |  |  |  |  |
| S100013 |  | Prepare & Submit Site Security Management Plan |  | 20d | 2025-05-19 A | 2025-07-15 A | MIL-0001 | 100% |  | 2025-05-19 | 2025-06-16 |  |  |  |  |  |  |  |
| S100014 |  | Prepare & Submit Emergency Response Plan |  | 20d | 2025-05-19 A | 2025-07-14 A | MIL-0001 | 100% |  | 2025-05-19 | 2025-06-16 |  |  |  |  |  |  |  |
| S10002 |  | Prepare & Submit Method of Statement |  | 20d | 2025-05-19 A | 2026-11-10 | MIL-0001 | 80% | 4d | 2025-05-19 | 2025-06-16 | 38.4d | 0d |  |  | WO#50-DE-SUB-2 | WO.43.DC.SUB.1030 | 1 |
| S10003 |  | Prepare & Submit Quality plan |  | 20d | 2025-05-19 A | 2025-06-24 A | MIL-0001 | 100% |  | 2025-05-19 | 2025-06-16 |  |  |  |  | WO#50-DE-SUB-3 | WO.43.DC.SUB.1020 | 1 |
| S10004 |  | Prepare & Submit Construction Environmental Management Plan (CEMP) |  | 25d | 2025-05-19 A | 2025-09-03 A | MIL-0001 | 100% |  | 2025-05-19 | 2025-06-22 |  |  |  |  | WO#50-DE-SUB-4 | WO.43.DC.SUB.1010 | 1 |
| S10005 |  | Prepare & Submit Safety plan |  | 20d | 2025-05-19 A | 2025-06-19 A | MIL-0001 | 100% |  | 2025-05-19 | 2025-06-16 |  |  |  |  | WO#50-DE-SUB-5 | WO.43.DC.SUB.1000 | 1 |
| S10006 |  | Prepare & Submit Contractual Project Time Schedule |  | 37d | 2025-05-19 A | 2025-08-05 A | MIL-0001 | 100% |  | 2025-05-19 | 2025-07-06 |  |  |  |  | WO#50-DE-SUB-6 | WO.43.DC.SUB.1050 | 1 |
| S10008 |  | Prepare & Submit Insurance |  | 14d | 2025-05-19 A | 2025-07-17 A | MIL-0001 | 100% |  | 2025-05-19 | 2025-06-03 |  |  |  |  | WO#50-DE-SUB-8 | WO.43.DC.SUB.1070 | 1 |
| S10001 |  | Prepare & Submit Organization Chart |  | 15d | 2025-05-29 A | 2025-05-29 A | MIL-0001 | 100% |  | 2025-05-19 | 2025-06-04 |  |  |  |  | WO#50-DE-SUB-1 | WO.43.DC.SUB.1040 | 1 |
| S100012 |  | Prepare & Submit Document Control Plan |  | 15d | 2025-08-23 A | 2025-08-24 A | MIL-0001 | 100% |  | 2025-08-23 | 2025-09-08 |  |  |  |  |  |  |  |
| S100016 |  | Prepare & Submit Operability and Maintainability Plan |  | 20d | 2025-08-23 A | 2025-08-24 A | MIL-0001 | 100% |  | 2025-08-23 | 2025-09-14 |  |  |  |  |  |  |  |
| S10009 |  | Prepare & Submit Procurement Plan |  | 30d | 2025-10-01 A | 2025-10-01 A | MIL-0001 | 100% |  | 2025-10-18 | 2025-11-20 |  |  |  |  | WO#50-DE-SUB-9 | A3350 | 1 |
| S100011 |  | Prepare & Submit Interface management plan |  | 30d | 2026-01-16 A | 2026-01-18 A | MIL-0001 | 100% |  | 2026-01-24 | 2026-03-08 |  |  |  |  |  |  |  |
| S100015 |  | Prepare & Submit Pre-commissioning/ Commissioning Plan/ Startup/ Testing / Handover Plan |  | 60d | 2026-11-07 | 2027-01-14 | MIL-0001 |  |  |  |  | -22.6d | 0d |  |  |  |  |  |

| ID | WBS | Activity | Duration | Start | Finish | Predecessors | Complete | Remaining | Planned start | Planned finish | Total float | Free float | Calendar | Activity Code | Activity Code1 | Planned % Upto date | MOD-2937 |
| --- | --- | --- | --- | --- | --- | --- | --- | --- | --- | --- | --- | --- | --- | --- | --- | --- | --- |
|  | 2 | **Approvals** |  | 2025-05-19 | 2027-01-26 |  |  |  |  |  |  |  |  |  |  |  |  |
| S100156 |  | Approval of Performance Bond | 10d | 2025-05-19 A | 2025-05-19 A | S10007 | 100% |  | 2025-06-04 | 2025-06-21 |  |  |  | WO#50-DE-SUB-7 | WO.43.DC.SUB.1060 | 1 |  |
| S100036 |  | Approval of Mobilization plan | 10d | 2025-05-31 A | 2025-07-21 A | S100010 | 100% |  | 2025-05-31 | 2025-06-16 |  |  |  |  |  |  |  |
| S100166 |  | Approval of Insurance | 10d | 2025-06-04 A | 2025-07-17 A | S10008 | 100% |  | 2025-06-04 | 2025-06-21 |  |  |  | WO#50-DE-SUB-8 | WO.43.DC.SUB.1070 | 1 |  |
| S100066 |  | Approval of Site Security Management Plan | 10d | 2025-06-17 A | 2025-07-29 A | S100013 | 100% |  | 2025-06-17 | 2025-06-28 |  |  |  |  |  |  |  |
| S100116 |  | Approval of Quality plan | 10d | 2025-06-17 A | 2025-07-21 A | S10003 | 100% |  | 2025-06-17 | 2025-06-28 |  |  |  | WO#50-DE-SUB-3 | WO.43.DC.SUB.1020 | 1 |  |
| S100106 |  | Approval of Method of Statement | 10d | 2025-07-17 A | 2026-11-16 | S10002 | 50% | 5d | 2025-09-08 | 2025-09-18 | 38.4d | 61d |  | WO#50-DE-SUB-2 | WO.43.DC.SUB.1030 | 1 |  |
| S100146 |  | Approval of Contractual Project Time Schedule | 10d | 2025-07-31 A | 2025-08-12 A | S10006 | 100% |  | 2025-07-07 | 2025-07-17 |  |  |  | WO#50-DE-SUB-6 | WO.43.DC.SUB.1050 | 1 |  |
| S100056 |  | Approval of Document Control Plan | 10d | 2025-08-23 A | 2025-08-24 A | S100012 | 100% |  | 2025-09-09 | 2025-09-20 |  |  |  |  |  |  |  |
| S100096 |  | Approval of Operability and Maintainability Plan | 10d | 2025-08-23 A | 2025-08-24 A | S100016 | 100% |  | 2025-09-15 | 2025-09-27 |  |  |  |  |  |  |  |
| S100126 |  | Approval of Construction Environmental Management Plan (CEMP) | 10d | 2025-09-03 A | 2025-09-10 A | S10004 | 100% |  | 2025-09-20 | 2025-10-02 |  |  |  | WO#50-DE-SUB-4 | WO.43.DC.SUB.1010 | 1 |  |
| S100136 |  | Approval of Safety plan | 10d | 2025-10-02 A | 2025-10-02 A | S10005 | 100% |  | 2025-10-18 | 2025-10-28 |  |  |  | WO#50-DE-SUB-5 | WO.43.DC.SUB.1000 | 1 |  |
| S100176 |  | Approval of Procurement Plan | 10d | 2025-10-02 A | 2025-10-02 A | S10009 | 100% |  | 2025-11-22 | 2025-12-02 |  |  |  | WO#50-DE-SUB-9 | A3350 | 1 |  |
| S100026 |  | Approval of Organization Chart | 10d | 2025-10-18 A | 2025-10-19 A | S10001 | 100% |  | 2025-10-18 | 2025-10-28 |  |  |  | WO#50-DE-SUB-1 | WO.43.DC.SUB.1040 | 1 |  |
| S100076 |  | Approval of Emergency Response Plan | 10d | 2025-10-18 A | 2025-10-20 A | S100014 | 100% |  | 2025-10-18 | 2025-10-28 |  |  |  |  |  |  |  |
| S100046 |  | Approval of Interface management plan | 10d | 2026-01-17 A | 2026-01-23 A | S100011, S100011 FF | 100% |  | 2026-03-08 | 2026-03-29 |  |  |  |  |  |  |  |
| S100086 |  | Approval of Pre-commissioning/ Commissioning Plan/ Startup/ Testing / Handover Plan | 10d | 2027-01-16 | 2027-01-26 | S100015 |  |  |  |  | -22.6d | 0d |  |  |  |  |  |
|  | 7 | **Engineering** |  | 2025-05-20 | 2026-11-18 |  |  |  |  |  |  |  |  |  |  |  |  |
|  | 3 | **Shop Drawing** |  | 2025-05-20 | 2026-11-12 |  |  |  |  |  |  |  |  |  |  |  |  |
|  | 1 | **Submittals** |  | 2025-05-20 | 2026-04-01 |  |  |  |  |  |  |  |  |  |  |  |  |
| A1550 |  | Earthworks details submittal | 33d | 2025-05-20 A | 2025-07-21 A | MIL-0001 | 100% |  | 2025-05-19 | 2025-07-02 |  |  | MOD-5D |  |  |  | ENGG |
| A1560 |  | Roadworks details submittal | 33d | 2025-05-20 A | 2025-07-21 A | MIL-0001 | 100% |  | 2025-05-19 | 2025-07-02 |  |  | MOD-5D |  |  |  | ENGG |
| A1590 |  | Electrical details submittal | 33d | 2025-05-20 A | 2025-07-21 A | MIL-0001 | 100% |  | 2025-05-19 | 2025-07-02 |  |  | MOD-5D |  |  |  | ENGG |
| A1620 |  | Mechanical details submittal | 33d | 2025-05-20 A | 2025-09-01 A | MIL-0001 | 100% |  | 2025-05-19 | 2025-07-02 |  |  | MOD-5D |  |  |  | ENGG |
| A1580 |  | Landscape details submittal | 33d | 2026-01-01 A | 2026-04-01 A | MIL-0001 | 100% |  | 2026-01-18 | 2026-03-08 |  |  | MOD-5D |  |  |  | ENGG |

| ID | WBS | Activity | Duration | Start | Finish | Predecessors | Complete | Remaining | Planned start | Planned finish | Total float | Free float | Calendar | Resources | Cost | Actual cost | MOD-2937 |
| --- | --- | --- | --- | --- | --- | --- | --- | --- | --- | --- | --- | --- | --- | --- | --- | --- | --- |
|  | 2 | **Approvals** |  | 2025-07-06 | 2026-11-12 |  |  |  |  |  |  |  |  |  |  |  |  |
| A1600 |  | Earthworks details approval | 10d | 2025-07-06 A | 2025-08-28 A | A1550 | 100% |  | 2025-07-03 | 2025-07-16 |  |  | MOD-5D |  |  |  | ENGG |
| A1610 |  | Roadworks details approval | 10d | 2025-07-06 A | 2025-08-28 A | A1560 | 100% |  | 2025-07-03 | 2025-07-16 |  |  | MOD-5D |  |  |  | ENGG |
| A1640 |  | Electrical details approval | 10d | 2025-07-06 A | 2025-08-28 A | A1590 | 100% |  | 2025-07-03 | 2025-07-16 |  |  | MOD-5D |  |  |  | ENGG |
| A1650 |  | Mechanical details approval | 10d | 2025-07-06 A | 2025-09-01 A | A1620 | 100% |  | 2025-07-03 | 2025-07-16 |  |  | MOD-5D |  |  |  | ENGG |
| A1630 |  | Landscape details approval | 10d | 2026-03-01 A | 2026-11-12 | A1580 | 50% | 5d | 2026-06-04 | 2026-06-18 | -137d | 0d | MOD-5D |  |  |  | ENGG |
|  | 1 | **Material Submittal & Approval** |  | 2025-05-26 | 2026-11-18 |  |  |  |  |  |  |  |  |  |  |  |  |
|  | 20 | **Long Lead Items** |  | 2025-06-18 | 2026-11-11 |  |  |  |  |  |  |  |  |  |  |  |  |
|  | 8 | **Pipes (DI / GRP) - For potable, irrigation, sewer, storm** |  | 2025-06-18 | 2025-07-22 |  |  |  |  |  |  |  |  |  |  |  |  |
| A1140 |  | Material Submittal for Pipes (DI / GRP) - For potable, irrigation, sewer, storm | 12d | 2025-06-18 A | 2025-07-16 A | A1139 SS, A1138, A1139 | 100% |  | 2025-07-03 | 2025-07-20 |  |  | MOD-5D | Contract Price Original Scope [107639] | 107,639.37 | 107,639.37 | ENGG |
| A1150 |  | Material Approval for Pipes (DI / GRP) - For potable, irrigation, sewer, storm | 6d | 2025-06-24 A | 2025-07-22 A | A1140 | 100% |  | 2025-07-21 | 2025-07-28 |  |  | MOD-5D | Contract Price Original Scope [71759.6] | 71,759.58 | 71,759.58 | ENGG |
|  | 2 | **Drainage Channel Covers (GRP / DI) - For storm and wastewater** |  | 2025-06-18 | 2025-07-24 |  |  |  |  |  |  |  |  |  |  |  |  |
| A102830 |  | Material Submittal for Drainage Channel Covers (GRP / DI) - For storm and wastewater | 17d | 2025-06-18 A | 2025-07-16 A | A103220 | 100% |  | 2025-07-03 | 2025-07-27 |  |  | MOD-5D | Contract Price Original Scope [785314] | 785,314.22 | 785,314.22 | ENGG |
| A102840 |  | Material Approval for Drainage Channel Covers (GRP / DI) - For storm and wastewater | 7d | 2025-06-24 A | 2025-07-24 A | A102830 | 100% |  | 2025-07-28 | 2025-08-05 |  |  | MOD-5D | Contract Price Original Scope [523543] | 523,542.81 | 523,542.81 | ENGG |
|  | 4 | **Manholes (Precast / Cast in situ) - All networks** |  | 2025-07-20 | 2025-07-29 |  |  |  |  |  |  |  |  |  |  |  |  |
| A102850 |  | Material Submittal for Manholes (Precast / Cast in situ) - All networks | 13d | 2025-07-20 A | 2025-07-24 A | A103240 | 100% |  | 2025-07-03 | 2025-07-21 |  |  | MOD-5D | Contract Price Original Scope [213900] | 213,900.36 | 213,900.36 | ENGG |
| A102860 |  | Material Approval for Manholes (Precast / Cast in situ) - All networks | 7d | 2025-07-29 A | 2025-07-29 A | A102850 | 100% |  | 2025-07-22 | 2025-07-30 |  |  | MOD-5D | Contract Price Original Scope [142600] | 142,600.24 | 142,600.24 | ENGG |
|  | 3 | **Control & Instrumentation Devices - Flow meters, pressure sensors** |  | 2025-07-20 | 2025-09-02 |  |  |  |  |  |  |  |  |  |  |  |  |
| A102870 |  | Material Submittal for Control & Instrumentation Devices - Flow meters, pressure sensors | 13d | 2025-07-20 A | 2025-08-07 A | A103260 | 100% |  | 2025-07-03 | 2025-07-21 |  |  | MOD-5D | Contract Price Original Scope [27872] | 27,872.04 | 27,872.04 | ENGG |
| A102880 |  | Material Approval for Control & Instrumentation Devices - Flow meters, pressure sensors | 7d | 2025-08-04 A | 2025-09-02 A | A102870 | 100% |  | 2025-07-22 | 2025-07-30 |  |  | MOD-5D | Contract Price Original Scope [18581.4] | 18,581.36 | 18,581.36 | ENGG |
|  | 10 | **Pumps (Sewage, Irrigation, Booster) - Especially for pumping stations** |  | 2025-08-12 | 2025-10-16 |  |  |  |  |  |  |  |  |  |  |  |  |
| A102890 |  | Material Submittal for Pumps (Sewage, Irrigation, Booster) - Especially for pumping stations | 13d | 2025-08-12 A | 2025-10-09 A | A103270, A103280 SS | 100% |  | 2025-09-14 | 2025-09-30 |  |  | MOD-5D | Contract Price Original Scope [315140] | 315,139.75 | 315,139.75 | ENGG |
| A102900 |  | Material Approval for Pumps (Sewage, Irrigation, Booster) - Especially for pumping stations | 7d | 2025-10-08 A | 2025-10-16 A | A102890 | 100% |  | 2025-11-17 | 2025-11-26 |  |  | MOD-5D | Contract Price Original Scope [210093] | 210,093.16 | 210,093.16 | ENGG |
|  | 6 | **Lighting Poles & Fixtures - External works, Roads, PS** |  | 2025-07-03 | 2025-08-07 |  |  |  |  |  |  |  |  |  |  |  |  |
| A102910 |  | Material Submittal for Lighting Poles & Fixtures - External works, Roads, PS | 13d | 2025-07-03 A | 2025-08-05 A | A103300 | 100% |  | 2025-07-03 | 2025-07-21 |  |  | MOD-5D | Contract Price Original Scope [54000.7] | 54,000.69 | 54,000.69 | ENGG |
| A102920 |  | Material Approval for Lighting Poles & Fixtures - External works, Roads, PS | 7d | 2025-07-22 A | 2025-08-07 A | A102910 | 100% |  | 2025-07-22 | 2025-07-30 |  |  | MOD-5D | Contract Price Original Scope [36000.5] | 36,000.46 | 36,000.46 | ENGG |

| ID | WBS | Activity | Duration | Start | Finish | Predecessors | Complete | Remaining | Planned start | Planned finish | Total float | Free float | Calendar | Resources | Cost | Actual cost | MOD-2937 |
| --- | --- | --- | --- | --- | --- | --- | --- | --- | --- | --- | --- | --- | --- | --- | --- | --- | --- |
|  | 13 | **Generators & Fuel Tanks - PS & Control Bldg backup power** |  | 2025-07-20 | 2026-11-11 |  |  |  |  |  |  |  |  |  |  |  |  |
| A102930 |  | Material Submittal for Generators & Fuel Tanks - PS & Control Bldg backup power | 13d | 2025-07-20 A | 2026-11-10 | A103320 | 80% | 2.6d | 2025-07-03 | 2025-07-21 | -24.21d | 0d | MOD-5D | Contract Price Original Scope [186921] | 186,920.78 | 149,536.62 | ENGG |
| A102940 |  | Material Approval for Generators & Fuel Tanks - PS & Control Bldg backup power | 7d | 2025-12-15 A | 2026-11-11 | A102930 | 80% | 1.4d | 2025-12-21 | 2025-12-29 | -24.21d | 0d | MOD-5D | Contract Price Original Scope [124614] | 124,613.85 | 99,691.08 | ENGG |
|  | 12 | **Cable Trays / Electrical Panels (MCC) - PS and Control Buildings** |  | 2025-07-20 | 2025-08-24 |  |  |  |  |  |  |  |  |  |  |  |  |
| A102950 |  | Material Submittal for Cable Trays / Electrical Panels (MCC) - PS and Control Buildings | 13d | 2025-07-20 A | 2025-07-24 A | A103340 | 100% |  | 2026-01-22 | 2026-02-09 |  |  | MOD-5D | Contract Price Original Scope [6994.04] | 6,994.04 | 6,994.04 | ENGG |
| A102960 |  | Material Approval for Cable Trays / Electrical Panels (MCC) - PS and Control Buildings | 7d | 2025-08-24 A | 2025-08-24 A | A102950 | 100% |  | 2026-03-02 | 2026-03-15 |  |  | MOD-5D | Contract Price Original Scope [4662.69] | 4,662.69 | 4,662.69 | ENGG |
|  | 11 | **Odor Control Units - Sewer PS-specific** |  | 2025-07-22 | 2025-08-13 |  |  |  |  |  |  |  |  |  |  |  |  |
| A102970 |  | Material Submittal for Odor Control Units - Sewer PS-specific | 13d | 2025-07-22 A | 2025-07-28 A | A103360 | 100% |  | 2025-12-10 | 2025-12-28 |  |  | MOD-5D | Contract Price Original Scope [23925.8] | 23,925.83 | 23,925.83 | ENGG |
| A102980 |  | Material Approval for Odor Control Units - Sewer PS-specific | 7d | 2025-08-02 A | 2025-08-13 A | A102970 | 100% |  | 2025-12-29 | 2026-01-06 |  |  | MOD-5D | Contract Price Original Scope [15950.5] | 15,950.55 | 15,950.55 | ENGG |
|  | 21 | **Short Lead Items** |  | 2025-05-26 | 2026-11-18 |  |  |  |  |  |  |  |  |  |  |  |  |
|  | 1 | **Asphalt** |  | 2025-08-05 | 2025-09-21 |  |  |  |  |  |  |  |  |  |  |  |  |
| A102990 |  | Material Submittal for Asphalt | 13d | 2025-08-05 A | 2025-09-21 A | A103380 | 100% |  | 2026-10-11 | 2026-10-28 |  |  | MOD-5D | Contract Price Original Scope [62156.8] | 62,156.8 | 62,156.8 | ENGG |
| A103000 |  | Material Approval for Asphalt | 7d | 2025-08-05 A | 2025-09-21 A | A102990 | 100% |  | 2026-12-06 | 2026-12-15 |  |  | MOD-5D | Contract Price Original Scope [41437.9] | 41,437.87 | 41,437.87 | ENGG |
|  | 8 | **Pipes (HDPE / uPVC) - For potable, irrigation, sewer, storm** |  | 2025-05-26 | 2025-06-24 |  |  |  |  |  |  |  |  |  |  |  |  |
| A103010 |  | Material Submittal for Pipes (HDPE / uPVC) - For potable, irrigation, sewer, storm | 13d | 2025-05-26 A | 2025-05-26 A | A103400 | 100% |  | 2025-07-03 | 2025-07-21 |  |  | MOD-5D | Contract Price Original Scope [897917] | 897,916.67 | 897,916.67 | ENGG |
| A103020 |  | Material Approval for Pipes (HDPE / uPVC) - For potable, irrigation, sewer, storm | 7d | 2025-05-27 A | 2025-06-24 A | A103010 | 100% |  | 2025-07-22 | 2025-07-30 |  |  | MOD-5D | Contract Price Original Scope [598611] | 598,611.11 | 598,611.11 | ENGG |
|  | 9 | **Valves (Gate, Air, NRV, Flow Control) - All water & drainage systems** |  | 2025-07-03 | 2026-05-02 |  |  |  |  |  |  |  |  |  |  |  |  |
| A103030 |  | Material Submittal for Valves (Gate, Air, NRV, Flow Control) - All water & drainage systems | 13d | 2025-07-03 A | 2025-07-23 A | A103420 | 100% |  | 2025-07-03 | 2025-07-21 |  |  | MOD-5D | Contract Price Original Scope [73933.7] | 73,933.73 | 73,933.73 | ENGG |
| A103040 |  | Material Approval for Valves (Gate, Air, NRV, Flow Control) - All water & drainage systems | 7d | 2025-07-29 A | 2026-05-02 A | A103030 | 100% |  | 2025-07-22 | 2025-07-30 |  |  | MOD-5D | Contract Price Original Scope [49289.2] | 49,289.15 | 49,289.15 | ENGG |
|  | 5 | **Chambers (Valve / Flowmeter / Washout) - Sewer, Potable, Irrigation** |  | 2025-07-15 | 2025-08-05 |  |  |  |  |  |  |  |  |  |  |  |  |
| A103050 |  | Material Submittal for Chambers (Valve / Flowmeter / Washout) - Sewer, Potable, Irrigation | 13d | 2025-07-15 A | 2025-07-24 A | A103440 | 100% |  | 2025-07-03 | 2025-07-21 |  |  | MOD-5D | Contract Price Original Scope [170410] | 170,409.79 | 170,409.79 | ENGG |
| A103060 |  | Material Approval for Chambers (Valve / Flowmeter / Washout) - Sewer, Potable, Irrigation | 7d | 2025-07-23 A | 2025-08-05 A | A103050 | 100% |  | 2025-07-22 | 2025-07-30 |  |  | MOD-5D | Contract Price Original Scope [113607] | 113,606.53 | 113,606.53 | ENGG |
|  | 7 | **Communication Ducts & Manholes - Telecom systems** |  | 2025-07-16 | 2025-08-03 |  |  |  |  |  |  |  |  |  |  |  |  |
| A103070 |  | Material Submittal for Communication Ducts & Manholes - Telecom systems | 13d | 2025-07-16 A | 2025-07-21 A | A103460 | 100% |  | 2026-06-03 | 2026-06-22 |  |  | MOD-5D | Contract Price Original Scope [38427.1] | 38,427.06 | 38,427.06 | ENGG |
| A103080 |  | Material Approval for Communication Ducts & Manholes - Telecom systems | 7d | 2025-07-23 A | 2025-08-03 A | A103070 | 100% |  | 2026-06-22 | 2026-07-01 |  |  | MOD-5D | Contract Price Original Scope [25618] | 25,618.04 | 25,618.04 | ENGG |

| ID | WBS | Activity | Duration | Start | Finish | Predecessors | Complete | Remaining | Planned start | Planned finish | Total float | Free float | Calendar | Resources | Cost | Actual cost | MOD-2937 |
| --- | --- | --- | --- | --- | --- | --- | --- | --- | --- | --- | --- | --- | --- | --- | --- | --- | --- |
|  | 19 | **Air Vents / Washout Assemblies - Water networks** |  | 2025-07-17 | 2025-10-02 |  |  |  |  |  |  |  |  |  |  |  |  |
| A103090 |  | Material Submittal for Air Vents / Washout Assemblies - Water networks | 21d | 2025-07-17 A | 2025-08-03 A | A103480 | 100% |  | 2025-07-03 | 2025-07-31 |  |  | MOD-5D | Contract Price Original Scope [21601.2] | 21,601.24 | 21,601.24 | ENGG |
| A103100 |  | Material Approval for Air Vents / Washout Assemblies - Water networks | 10d | 2025-08-03 A | 2025-10-02 A | A103090 | 100% |  | 2025-10-05 | 2025-10-16 |  |  | MOD-5D | Contract Price Original Scope [14400.8] | 14,400.83 | 14,400.83 | ENGG |
|  | 14 | **Warning Tapes, Marker Posts - All underground works** |  | 2025-09-01 | 2025-09-01 |  |  |  |  |  |  |  |  |  |  |  |  |
| A103110 |  | Material Submittal for Warning Tapes, Marker Posts - All underground works | 13d | 2025-09-01 A | 2025-09-01 A | A103500 | 100% |  | 2025-10-02 | 2025-10-20 |  |  | MOD-5D |  |  |  | ENGG |
| A103120 |  | Material Approval for Warning Tapes, Marker Posts - All underground works | 7d | 2025-09-01 A | 2025-09-01 A | A103110 | 100% |  | 2025-11-12 | 2025-11-20 |  |  | MOD-5D |  |  |  | ENGG |
|  | 17 | **Concrete (for culverts, pads, plinths) - Structural support works** |  | 2025-07-27 | 2025-08-07 |  |  |  |  |  |  |  |  |  |  |  |  |
| A103130 |  | Material Submittal for Concrete (for culverts, pads, plinths) - Structural support works | 21d | 2025-07-27 A | 2025-07-31 A | A103520 | 100% |  | 2025-07-03 | 2025-07-31 |  |  | MOD-5D | Contract Price Original Scope [724525] | 724,525.27 | 724,525.27 | ENGG |
| A103140 |  | Material Approval for Concrete (for culverts, pads, plinths) - Structural support works | 10d | 2025-08-02 A | 2025-08-07 A | A103130 | 100% |  | 2025-08-03 | 2025-08-14 |  |  | MOD-5D | Contract Price Original Scope [483017] | 483,016.85 | 483,016.85 | ENGG |
|  | 18 | **Steel (Rebar, Gratings, Ladders, Covers) - Structural & drainage items** |  | 2025-07-05 | 2025-07-16 |  |  |  |  |  |  |  |  |  |  |  |  |
| A103150 |  | Material Submittal for Steel (Rebar, Gratings, Ladders, Covers) - Structural & drainage items | 13d | 2025-07-05 A | 2025-07-12 A | A103540 | 100% |  | 2025-07-03 | 2025-07-21 |  |  | MOD-5D | Contract Price Original Scope [314839] | 314,839.03 | 314,839.03 | ENGG |
| A103160 |  | Material Approval for Steel (Rebar, Gratings, Ladders, Covers) - Structural & drainage items | 7d | 2025-07-13 A | 2025-07-16 A | A103150 | 100% |  | 2025-07-22 | 2025-07-30 |  |  | MOD-5D | Contract Price Original Scope [209893] | 209,892.69 | 209,892.69 | ENGG |
|  | 15 | **Interlock Tiles / Curbstone - Roads, Sidewalks, Landscape** |  | 2026-02-01 | 2026-11-17 |  |  |  |  |  |  |  |  |  |  |  |  |
| A103170 |  | Material Submittal for Interlock Tiles / Curbstone - Roads, Sidewalks, Landscape | 13d | 2026-02-01 A | 2026-02-20 A | A103560 | 100% |  | 2026-06-28 | 2026-07-15 |  |  | MOD-5D | Contract Price Original Scope [24532.1] | 24,532.11 | 24,532.11 | ENGG |
| A103180 |  | Material Approval for Interlock Tiles / Curbstone - Roads, Sidewalks, Landscape | 7d | 2026-02-21 A | 2026-11-17 | A103170 | 50% | 3.5d | 2026-07-15 | 2026-07-26 | 6.2d | 0d | MOD-5D | Contract Price Original Scope [16354.7] | 16,354.74 | 8,177.37 | ENGG |
|  | 16 | **Landscaping Materials (Soil, Plants) - Final works, softscape** |  | 2025-08-13 | 2026-11-18 |  |  |  |  |  |  |  |  |  |  |  |  |
| A103190 |  | Material Submittal for Landscaping Materials (Soil, Plants) - Final works, softscape | 13d | 2025-08-13 A | 2025-08-13 A | A103580 | 100% |  | 2026-02-15 | 2026-03-08 |  |  | MOD-5D | Contract Price Original Scope [157921] | 157,920.6 | 157,920.6 | ENGG |
| A103200 |  | Material Approval for Landscaping Materials (Soil, Plants) - Final works, softscape | 7d | 2026-04-01 A | 2026-11-18 | A103190 | 30% | 4.9d | 2026-05-14 | 2026-05-25 | -120.3d | 0d | MOD-5D | Contract Price Original Scope [105280] | 105,280.4 | 31,584.12 | ENGG |
|  | 3 | **Procurement** |  | 2025-05-19 | 2027-03-27 |  |  |  |  |  |  |  |  |  |  |  |  |
|  | 1 | **Prequalification** |  | 2025-05-19 | 2026-11-11 |  |  |  |  |  |  |  |  |  |  |  |  |
|  | 20 | **Long Lead Items** |  | 2025-05-19 | 2025-12-26 |  |  |  |  |  |  |  |  |  |  |  |  |
|  | 8 | **Pipes (DI / GRP) - For potable, irrigation, sewer, storm** |  | 2025-05-19 | 2025-06-24 |  |  |  |  |  |  |  |  |  |  |  |  |
| A1138 |  | Prequalification Submittal for Pipes (DI / GRP) - For potable, irrigation, sewer, storm | 24d | 2025-05-19 A | 2025-06-18 A | MIL-0001, MIL-0001 SS | 100% |  | 2025-05-19 | 2025-06-21 |  |  |  |  |  |  | PROC |
| A1139 |  | Prequalification Approval for Pipes (DI / GRP) - For potable, irrigation, sewer, storm | 10d | 2025-06-18 A | 2025-06-24 A | A1138 | 100% |  | 2025-06-22 | 2025-07-02 |  |  |  |  |  |  | PROC |

| ID | WBS | Activity | Duration | Start | Finish | Predecessors | Complete | Planned start | Planned finish | MOD-2937 |
| --- | --- | --- | --- | --- | --- | --- | --- | --- | --- | --- |
|  | 2 | **Drainage Channel Covers (GRP / DI) - For storm and wastewater** |  | 2025-05-19 | 2025-06-24 |  |  |  |  |  |
| A103210 |  | Prequalification Submittal for Drainage Channel Covers (GRP / DI) - For storm and wastewater | 24d | 2025-05-19 A | 2025-06-18 A | MIL-0001 | 100% | 2025-05-19 | 2025-06-21 | PROC |
| A103220 |  | Prequalification Approval for Drainage Channel Covers (GRP / DI) - For storm and wastewater | 10d | 2025-06-18 A | 2025-06-24 A | A103210 | 100% | 2025-06-22 | 2025-07-02 | PROC |
|  | 4 | **Manholes (Precast / Cast in situ) - All networks** |  | 2025-05-19 | 2025-07-30 |  |  |  |  |  |
| A103230 |  | Prequalification Submittal for Manholes (Precast / Cast in situ) - All networks | 24d | 2025-05-19 A | 2025-07-23 A | MIL-0001 | 100% | 2025-05-19 | 2025-06-21 | PROC |
| A103240 |  | Prequalification Approval for Manholes (Precast / Cast in situ) - All networks | 10d | 2025-06-22 A | 2025-07-30 A | A103230 | 100% | 2025-06-22 | 2025-07-02 | PROC |
|  | 3 | **Control & Instrumentation Devices - Flow meters, pressure sensors** |  | 2025-05-19 | 2025-07-30 |  |  |  |  |  |
| A103250 |  | Prequalification Submittal for Control & Instrumentation Devices - Flow meters, pressure sensors | 24d | 2025-05-19 A | 2025-07-23 A | MIL-0001 | 100% | 2025-05-19 | 2025-06-21 | PROC |
| A103260 |  | Prequalification Approval for Control & Instrumentation Devices - Flow meters, pressure sensors | 10d | 2025-06-22 A | 2025-07-30 A | A103250 | 100% | 2025-06-22 | 2025-07-02 | PROC |
|  | 10 | **Pumps (Sewage, Irrigation, Booster) - Especially for pumping stations** |  | 2025-10-18 | 2025-10-19 |  |  |  |  |  |
| A103280 |  | Prequalification Approval for Pumps (Sewage, Irrigation, Booster) - Especially for pumping stations | 10d | 2025-10-18 A | 2025-10-19 A | A103270 | 100% | 2025-11-15 | 2025-11-25 | PROC |
| A103270 |  | Prequalification Submittal for Pumps (Sewage, Irrigation, Booster) - Especially for pumping stations | 24d | 2025-10-18 A | 2025-10-19 A | MIL-0001 | 100% | 2025-10-18 | 2025-11-13 | PROC |
|  | 6 | **Lighting Poles & Fixtures - External works, Roads, PS** |  | 2025-05-19 | 2025-08-02 |  |  |  |  |  |
| A103290 |  | Prequalification Submittal for Lighting Poles & Fixtures - External works, Roads, PS | 24d | 2025-05-19 A | 2025-07-24 A | MIL-0001 | 100% | 2025-05-19 | 2025-06-21 | PROC |
| A103300 |  | Prequalification Approval for Lighting Poles & Fixtures - External works, Roads, PS | 10d | 2025-06-22 A | 2025-08-02 A | A103290 | 100% | 2025-06-22 | 2025-07-02 | PROC |
|  | 13 | **Generators & Fuel Tanks - PS & Control Bldg backup power** |  | 2025-05-19 | 2025-08-02 |  |  |  |  |  |
| A103310 |  | Prequalification Submittal for Generators & Fuel Tanks - PS & Control Bldg backup power | 24d | 2025-05-19 A | 2025-07-30 A | MIL-0001 | 100% | 2025-05-19 | 2025-06-21 | PROC |
| A103320 |  | Prequalification Approval for Generators & Fuel Tanks - PS & Control Bldg backup power | 10d | 2025-06-22 A | 2025-08-02 A | A103310 | 100% | 2025-06-22 | 2025-07-02 | PROC |
|  | 12 | **Cable Trays / Electrical Panels (MCC) - PS and Control Buildings** |  | 2025-09-26 | 2025-12-26 |  |  |  |  |  |
| A103340 |  | Prequalification Approval for Cable Trays / Electrical Panels (MCC) - PS and Control Buildings | 10d | 2025-09-26 A | 2025-09-30 A | A103330 | 100% | 2026-04-26 | 2026-05-07 | PROC |
| A103330 |  | Prequalification Submittal for Cable Trays / Electrical Panels (MCC) - PS and Control Buildings | 24d | 2025-12-02 A | 2025-12-26 A | MIL-0001, A102680 | 100% | 2026-03-29 | 2026-04-26 | PROC |
|  | 11 | **Odor Control Units - Sewer PS-specific** |  | 2025-08-05 | 2025-09-09 |  |  |  |  |  |
| A103350 |  | Prequalification Submittal for Odor Control Units - Sewer PS-specific | 21d | 2025-08-05 A | 2025-08-28 A | MIL-0001, A102230 | 100% | 2026-01-05 | 2026-01-28 | PROC |
| A103360 |  | Prequalification Approval for Odor Control Units - Sewer PS-specific | 10d | 2025-08-29 A | 2025-09-09 A | A103350 | 100% | 2026-01-29 | 2026-02-09 | PROC |

| ID | WBS | Activity | Duration | Start | Finish | Predecessors | Complete | Planned start | Planned finish | MOD-2937 |
| --- | --- | --- | --- | --- | --- | --- | --- | --- | --- | --- |
|  | 21 | **Short Lead Items** |  | 2025-05-19 | 2026-11-11 |  |  |  |  |  |
|  | 1 | **Asphalt** |  | 2025-07-17 | 2025-09-09 |  |  |  |  |  |
| A103370 |  | Prequalification Submittal for Asphalt | 24d | 2025-07-17 A | 2025-07-17 A | MIL-0001, A102720 | 100% | 2026-08-31 | 2026-09-29 | PROC |
| A103380 |  | Prequalification Approval for Asphalt | 10d | 2025-08-28 A | 2025-09-09 A | A103370 | 100% | 2026-11-28 | 2026-12-09 | PROC |
|  | 8 | **Pipes (HDPE / uPVC) - For potable, irrigation, sewer, storm** |  | 2025-05-19 | 2025-06-24 |  |  |  |  |  |
| A103390 |  | Prequalification Submittal for Pipes (HDPE / uPVC) - For potable, irrigation, sewer, storm | 24d | 2025-05-19 A | 2025-06-18 A | MIL-0001 | 100% | 2025-05-19 | 2025-06-21 | PROC |
| A103400 |  | Prequalification Approval for Pipes (HDPE / uPVC) - For potable, irrigation, sewer, storm | 10d | 2025-06-22 A | 2025-06-24 A | A103390 | 100% | 2025-06-22 | 2025-07-02 | PROC |
|  | 9 | **Valves (Gate, Air, NRV, Flow Control) - All water & drainage systems** |  | 2025-05-19 | 2025-08-03 |  |  |  |  |  |
| A103410 |  | Prequalification Submittal for Valves (Gate, Air, NRV, Flow Control) - All water & drainage systems | 24d | 2025-05-19 A | 2025-08-03 A | MIL-0001 | 100% | 2025-05-19 | 2025-06-21 | PROC |
| A103420 |  | Prequalification Approval for Valves (Gate, Air, NRV, Flow Control) - All water & drainage systems | 10d | 2025-06-22 A | 2025-08-03 A | A103410 | 100% | 2025-06-22 | 2025-07-02 | PROC |
|  | 5 | **Chambers (Valve / Flowmeter / Washout) - Sewer, Potable, Irrigation** |  | 2025-05-19 | 2025-08-03 |  |  |  |  |  |
| A103430 |  | Prequalification Submittal for Chambers (Valve / Flowmeter / Washout) - Sewer, Potable, Irrigation | 24d | 2025-05-19 A | 2025-08-03 A | MIL-0001 | 100% | 2025-05-19 | 2025-06-21 | PROC |
| A103440 |  | Prequalification Approval for Chambers (Valve / Flowmeter / Washout) - Sewer, Potable, Irrigation | 10d | 2025-06-22 A | 2025-08-03 A | A103430 | 100% | 2025-06-22 | 2025-07-02 | PROC |
|  | 7 | **Communication Ducts & Manholes - Telecom systems** |  | 2025-08-02 | 2025-08-03 |  |  |  |  |  |
| A103450 |  | Prequalification Submittal for Communication Ducts & Manholes - Telecom systems | 24d | 2025-08-02 A | 2025-08-03 A | MIL-0001, A102130 | 100% | 2026-04-20 | 2026-05-18 | PROC |
| A103460 |  | Prequalification Approval for Communication Ducts & Manholes - Telecom systems | 10d | 2025-08-02 A | 2025-08-03 A | A103450 | 100% | 2026-05-18 | 2026-06-03 | PROC |
|  | 19 | **Air Vents / Washout Assemblies - Water networks** |  | 2025-05-19 | 2025-08-03 |  |  |  |  |  |
| A103470 |  | Prequalification Submittal for Air Vents / Washout Assemblies - Water networks | 24d | 2025-05-19 A | 2025-08-03 A | MIL-0001 | 100% | 2025-05-19 | 2025-06-21 | PROC |
| A103480 |  | Prequalification Approval for Air Vents / Washout Assemblies - Water networks | 10d | 2025-06-22 A | 2025-08-03 A | A103470 | 100% | 2025-06-22 | 2025-07-02 | PROC |
|  | 14 | **Warning Tapes, Marker Posts - All underground works** |  | 2025-07-18 | 2025-09-25 |  |  |  |  |  |
| A103490 |  | Prequalification Submittal for Warning Tapes, Marker Posts - All underground works | 24d | 2025-07-18 A | 2025-08-13 A | MIL-0001 | 100% | 2025-10-18 | 2025-11-13 | PROC |
| A103500 |  | Prequalification Approval for Warning Tapes, Marker Posts - All underground works | 10d | 2025-09-15 A | 2025-09-25 A | A103490 | 100% | 2025-11-15 | 2025-11-25 | PROC |
|  | 17 | **Concrete (for culverts, pads, plinths) - Structural support works** |  | 2025-05-19 | 2025-06-24 |  |  |  |  |  |
| A103510 |  | Prequalification Submittal for Concrete (for culverts, pads, plinths) - Structural support works | 24d | 2025-05-19 A | 2025-06-18 A | MIL-0001 | 100% | 2025-05-19 | 2025-06-21 | PROC |
| A103520 |  | Prequalification Approval for Concrete (for culverts, pads, plinths) - Structural support works | 10d | 2025-06-22 A | 2025-06-24 A | A103510 | 100% | 2025-06-22 | 2025-07-02 | PROC |

| ID | WBS | Activity | Duration | Start | Finish | Predecessors | Complete | Remaining | Planned start | Planned finish | Total float | Free float | Resources | Cost | Actual cost | MOD-2937 |
| --- | --- | --- | --- | --- | --- | --- | --- | --- | --- | --- | --- | --- | --- | --- | --- | --- |
|  | 18 | **Steel (Rebar, Gratings, Ladders, Covers) - Structural & drainage items** |  | 2025-05-19 | 2025-07-14 |  |  |  |  |  |  |  |  |  |  |  |
| A103530 |  | Prequalification Submittal for Steel (Rebar, Gratings, Ladders, Covers) - Structural & drainage items | 24d | 2025-05-19 A | 2025-07-06 A | MIL-0001 | 100% |  | 2025-05-19 | 2025-06-21 |  |  |  |  |  | PROC |
| A103540 |  | Prequalification Approval for Steel (Rebar, Gratings, Ladders, Covers) - Structural & drainage items | 10d | 2025-06-22 A | 2025-07-14 A | A103530 | 100% |  | 2025-06-22 | 2025-07-02 |  |  |  |  |  | PROC |
|  | 15 | **Interlock Tiles / Curbstone - Roads, Sidewalks, Landscape** |  | 2026-02-21 | 2026-11-11 |  |  |  |  |  |  |  |  |  |  |  |
| A103550 |  | Prequalification Submittal for Interlock Tiles / Curbstone - Roads, Sidewalks, Landscape | 24d | 2026-02-21 A | 2026-03-01 A | MIL-0001, A102780 | 100% |  | 2026-05-14 | 2026-06-16 |  |  |  |  |  | PROC |
| A103560 |  | Prequalification Approval for Interlock Tiles / Curbstone - Roads, Sidewalks, Landscape | 10d | 2026-05-02 A | 2026-11-11 | A103550 | 50% | 5d | 2026-06-16 | 2026-06-28 | 8.2d | 0d |  |  |  | PROC |
|  | 16 | **Landscaping Materials (Soil, Plants) - Final works, softscape** |  | 2025-08-13 | 2026-11-11 |  |  |  |  |  |  |  |  |  |  |  |
| A103570 |  | Prequalification Submittal for Landscaping Materials (Soil, Plants) - Final works, softscape | 24d | 2025-08-13 A | 2025-08-13 A | MIL-0001, A102780 | 100% |  | 2026-01-05 | 2026-02-01 |  |  |  |  |  | PROC |
| A103580 |  | Prequalification Approval for Landscaping Materials (Soil, Plants) - Final works, softscape | 10d | 2025-08-13 A | 2026-11-11 | A103570 | 50% | 5d | 2026-02-02 | 2026-02-12 | -142.3d | 0d |  |  |  | PROC |
|  | 20 | **Long Lead Items** |  | 2025-08-02 | 2027-01-04 |  |  |  |  |  |  |  |  |  |  |  |
|  | 8 | **Pipes (DI / GRP) - For potable, irrigation, sewer, storm** |  | 2025-08-02 | 2026-01-06 |  |  |  |  |  |  |  |  |  |  |  |
| A102480 |  | Issue PO for Pipes (DI / GRP) - For potable, irrigation, sewer, storm | 4d | 2025-08-02 A | 2025-08-05 A | A1150 | 100% |  | 2025-07-29 | 2025-08-02 |  |  |  |  |  | PROC |
| A102490 |  | Manufacturing for Pipes (DI / GRP) - For potable, irrigation, sewer, storm | 30d | 2025-08-06 A | 2026-01-05 A | A102480 | 100% |  | 2025-10-18 | 2025-11-20 |  |  |  |  |  | PROC |
| A102550 |  | Custom Clearance for Pipes (DI / GRP) - For potable, irrigation, sewer, storm | 5d | 2025-09-17 A | 2026-01-06 A | A102490 | 100% |  | 2025-11-22 | 2025-11-26 |  |  |  |  |  | PROC |
| A102500 |  | Delivery for Pipes (DI / GRP) - For potable, irrigation, sewer, storm | 30d | 2025-09-20 A | 2026-01-05 A | A102490, A102550 | 100% |  | 2025-11-27 | 2025-12-31 |  |  | Contract Price Original Scope [1100928] | 1,100,928.44 | 1,100,928.44 | PROC |
| A102560 |  | Staging Time for Pipes (DI / GRP) - For potable, irrigation, sewer, storm | 30d | 2025-09-20 A | 2026-01-05 A | A102500 | 100% |  | 2026-01-01 | 2026-02-04 |  |  |  |  |  | PROC |
|  | 2 | **Drainage Channel Covers (GRP / DI) - For storm and wastewater** |  | 2025-11-05 | 2026-11-08 |  |  |  |  |  |  |  |  |  |  |  |
| A1220 |  | Issue PO for Drainage Channel Covers (GRP / DI) - For storm and wastewater | 4d | 2025-11-05 A | 2025-12-06 A | A102840 | 100% |  | 2025-11-29 | 2025-12-02 |  |  |  |  |  | PROC |
| A102570 |  | Custom Clearance for Drainage Channel Covers (GRP / DI) - For storm and wastewater | 10d | 2025-11-17 A | 2026-11-07 | A1230 | 99% | 0.1d | 2026-01-17 | 2026-01-27 | -97.31d | 0d |  |  |  | PROC |
| A1230 |  | Manufacturing for Drainage Channel Covers (GRP / DI) - For storm and wastewater | 60d | 2025-11-19 A | 2026-11-07 | A1220 | 99% | 0.6d | 2025-12-01 | 2026-02-08 | -97.31d | 0d |  |  |  | PROC |
| A1240 |  | Delivery for Drainage Channel Covers (GRP / DI) - For storm and wastewater | 25d | 2025-11-23 A | 2026-11-07 | A1230, A102570 | 99% | 0.25d | 2026-02-07 | 2026-03-25 | -97.31d | 0d | Contract Price Original Scope [8032142] | 8,032,142.32 | 7,951,820.9 | PROC |
| A102580 |  | Staging Time for Drainage Channel Covers (GRP / DI) - For storm and wastewater | 30d | 2026-01-01 A | 2026-11-08 | A1240 | 99% | 0.3d | 2026-05-13 | 2026-06-22 | -97.31d | 9.75d |  |  |  | PROC |
|  | 4 | **Manholes (Precast / Cast in situ) - All networks** |  | 2025-09-16 | 2026-05-21 |  |  |  |  |  |  |  |  |  |  |  |
| A1460 |  | Issue PO for Manholes (Precast / Cast in situ) - All networks | 4d | 2025-09-16 A | 2025-09-16 A | A102860 | 100% |  | 2025-09-27 | 2025-09-30 |  |  |  |  |  | PROC |
| A1470 |  | Manufacturing for Manholes (Precast / Cast in situ) - All networks | 45d | 2025-09-16 A | 2026-05-01 A | A1460 | 100% |  | 2025-10-01 | 2025-11-22 |  |  |  |  |  | PROC |
| A102590 |  | Custom Clearance for Manholes (Precast / Cast in situ) - All networks | 10d | 2025-09-20 A | 2026-05-04 A | A1470 | 100% |  | 2025-10-07 | 2025-10-18 |  |  |  |  |  | PROC |
| A1480 |  | Delivery for Manholes (Precast / Cast in situ) - All networks | 30d | 2025-09-21 A | 2026-05-16 A | A1470, A102590 | 100% |  | 2025-09-21 | 2025-10-26 |  |  | Contract Price Original Scope [2187759] | 2,187,758.88 | 2,187,758.88 | PROC |
| A102600 |  | Staging Time for Manholes (Precast / Cast in situ) - All networks | 30d | 2025-11-11 A | 2026-05-21 A | A1480 | 100% |  | 2026-05-11 | 2026-06-20 |  |  |  |  |  | PROC |

| ID | WBS | Activity | Duration | Start | Finish | Predecessors | Complete | Remaining | Planned start | Planned finish | Total float | Free float | Resources | Cost | Actual cost | MOD-2937 |
| --- | --- | --- | --- | --- | --- | --- | --- | --- | --- | --- | --- | --- | --- | --- | --- | --- |
|  | 3 | **Control & Instrumentation Devices - Flow meters, pressure sensors** |  | 2025-08-24 | 2026-12-03 |  |  |  |  |  |  |  |  |  |  |  |
| A1520 |  | Issue PO for Control & Instrumentation Devices - Flow meters, pressure sensors | 4d | 2025-08-24 A | 2025-08-24 A | A102880 | 100% |  | 2025-08-28 | 2025-09-02 |  |  |  |  |  | PROC |
| A1530 |  | Manufacturing for Control & Instrumentation Devices - Flow meters, pressure sensors | 45d | 2025-08-24 A | 2026-11-08 | A1520 | 96% | 1.8d | 2025-09-02 | 2025-10-26 | -69.35d | 0d |  |  |  | PROC |
| A102610 |  | Custom Clearance for Control & Instrumentation Devices - Flow meters, pressure sensors | 5d | 2025-11-26 A | 2026-11-08 | A1530 | 96% | 0.2d | 2025-12-24 | 2025-12-30 | -69.35d | 0d |  |  |  | PROC |
| A1570 |  | Delivery for Control & Instrumentation Devices - Flow meters, pressure sensors | 35d | 2026-04-13 A | 2026-11-10 | A1530, A102610 | 95% | 1.75d | 2026-06-06 | 2026-07-16 | -69.35d | 0d | Contract Price Original Scope [285073] | 285,073.41 | 270,819.74 | PROC |
| A102620 |  | Staging Time for Control & Instrumentation Devices - Flow meters, pressure sensors | 30d | 2026-04-16 A | 2026-12-03 | A1570 | 35% | 19.5d | 2026-07-16 | 2026-08-20 | -69.35d | 0d |  |  |  | PROC |
|  | 10 | **Pumps (Sewage, Irrigation, Booster) - Especially for pumping stations** |  | 2025-10-16 | 2026-11-11 |  |  |  |  |  |  |  |  |  |  |  |
| A102140 |  | Issue PO for Pumps (Sewage, Irrigation, Booster) - Especially for pumping stations | 4d | 2025-10-16 A | 2025-10-16 A | A102900 | 100% |  | 2025-11-26 | 2025-12-01 |  |  |  |  |  | PROC |
| A102150 |  | Manufacturing for Pumps (Sewage, Irrigation, Booster) - Especially for pumping stations | 45d | 2025-10-16 A | 2026-11-07 | A102140 | 98% | 0.9d | 2025-12-01 | 2026-01-22 | 18.8d | 0d |  |  |  | PROC |
| A102170 |  | Delivery for Pumps (Sewage, Irrigation, Booster) - Especially for pumping stations | 45d | 2025-11-05 A | 2026-11-09 | A102150, A102630 | 96% | 1.8d | 2026-01-11 | 2026-03-16 | 18.8d | 0d | Contract Price Original Scope [3223229] | 3,223,228.65 | 3,094,299.5 | PROC |
| A102630 |  | Custom Clearance for Pumps (Sewage, Irrigation, Booster) - Especially for pumping stations | 5d | 2025-11-28 A | 2026-11-08 | A102150 | 96% | 0.2d | 2026-01-10 | 2026-01-14 | 18.8d | 0d |  |  |  | PROC |
| A102640 |  | Staging Time for Pumps (Sewage, Irrigation, Booster) - Especially for pumping stations | 30d | 2026-01-20 A | 2026-11-11 | A102170 | 96% | 1.2d | 2026-05-14 | 2026-06-23 | 18.8d | 16.71d |  |  |  | PROC |
|  | 6 | **Lighting Poles & Fixtures - External works, Roads, PS** |  | 2025-10-10 | 2026-01-12 |  |  |  |  |  |  |  |  |  |  |  |
| A1400 |  | Issue PO for Lighting Poles & Fixtures - External works, Roads, PS | 4d | 2025-10-10 A | 2025-10-11 A | A102920 | 100% |  | 2025-10-18 | 2025-10-21 |  |  |  |  |  | PROC |
| A102650 |  | Custom Clearance for Lighting Poles & Fixtures - External works, Roads, PS | 5d | 2025-11-27 A | 2025-12-14 A | A1410 | 100% |  | 2026-01-27 | 2026-02-01 |  |  |  |  |  | PROC |
| A1410 |  | Manufacturing for Lighting Poles & Fixtures - External works, Roads, PS | 60d | 2025-11-29 A | 2025-12-03 A | A1400 | 100% |  | 2025-11-29 | 2026-02-05 |  |  |  |  |  | PROC |
| A1420 |  | Delivery for Lighting Poles & Fixtures - External works, Roads, PS | 25d | 2025-11-30 A | 2025-12-09 A | A1410, A102650 | 100% |  | 2026-02-02 | 2026-03-14 |  |  | Contract Price Original Scope [552316] | 552,315.51 | 552,315.51 | PROC |
| A102660 |  | Staging Time for Lighting Poles & Fixtures - External works, Roads, PS | 30d | 2025-12-02 A | 2026-01-12 A | A1420 | 100% |  | 2025-12-13 | 2026-01-15 |  |  |  |  |  | PROC |
|  | 13 | **Generators & Fuel Tanks - PS & Control Bldg backup power** |  | 2025-12-05 | 2026-11-30 |  |  |  |  |  |  |  |  |  |  |  |
| A102220 |  | Issue PO for Generators & Fuel Tanks - PS & Control Bldg backup power | 4d | 2025-12-05 A | 2025-12-10 A | A102940 | 100% |  | 2025-12-29 | 2026-01-01 |  |  |  |  |  | PROC |
| A102230 |  | Manufacturing for Generators & Fuel Tanks - PS & Control Bldg backup power | 55d | 2025-12-08 A | 2026-11-15 | A102220 | 96% | 2.2d | 2026-01-12 | 2026-04-04 | -29.21d | 0d |  |  |  | PROC |
| A102250 |  | Delivery for Generators & Fuel Tanks - PS & Control Bldg backup power | 21d | 2025-12-10 A | 2026-11-16 | A102230, A102670 | 94% | 1.26d | 2026-03-26 | 2026-04-20 | -29.21d | 0d | Contract Price Original Scope [1911813] | 1,911,813.46 | 1,797,104.65 | PROC |
| A102670 |  | Custom Clearance for Generators & Fuel Tanks - PS & Control Bldg backup power | 5d | 2026-01-01 A | 2026-11-15 | A102230 | 93% | 0.35d | 2026-07-23 | 2026-07-29 | -29.21d | 0d |  |  |  | PROC |
| A102680 |  | Staging Time for Generators & Fuel Tanks - PS & Control Bldg backup power | 30d | 2026-07-04 A | 2026-11-30 | A102250 | 60% | 12d | 2026-07-30 | 2026-09-03 | -29.21d | 0d |  |  |  | PROC |

| ID | WBS | Activity | Duration | Start | Finish | Predecessors | Complete | Remaining | Planned start | Planned finish | Total float | Free float | Resources | Cost | Actual cost | MOD-2937 |
| --- | --- | --- | --- | --- | --- | --- | --- | --- | --- | --- | --- | --- | --- | --- | --- | --- |
|  | 12 | **Cable Trays / Electrical Panels (MCC) - PS and Control Buildings** |  | 2025-08-24 | 2025-10-23 |  |  |  |  |  |  |  |  |  |  |  |
| A102200 |  | Issue PO for Cable Trays / Electrical Panels (MCC) - PS and Control Buildings | 4d | 2025-08-24 A | 2025-08-24 A | A102680, A102960 | 100% |  | 2026-04-16 | 2026-04-21 |  |  |  |  |  | PROC |
| A102210 |  | Manufacturing for Cable Trays / Electrical Panels (MCC) - PS and Control Buildings | 90d | 2025-08-24 A | 2025-08-24 A | A102200 | 100% |  | 2026-05-07 | 2026-08-25 |  |  |  |  |  | PROC |
| A102690 |  | Custom Clearance for Cable Trays / Electrical Panels (MCC) - PS and Control Buildings | 20d | 2025-08-24 A | 2025-08-24 A | A102210 | 100% |  | 2026-08-25 | 2026-09-17 |  |  |  |  |  | PROC |
| A102240 |  | Delivery for Cable Trays / Electrical Panels (MCC) - PS and Control Buildings | 60d | 2025-10-10 A | 2025-10-11 A | A102210, A102690 | 100% |  | 2026-09-17 | 2026-11-28 |  |  | Contract Price Original Scope [71534.6] | 71,534.55 | 71,534.55 | PROC |
| A102700 |  | Staging Time for Cable Trays / Electrical Panels (MCC) - PS and Control Buildings | 30d | 2025-10-10 A | 2025-10-23 A | A102240 | 100% |  | 2026-11-28 | 2027-01-02 |  |  |  |  |  | PROC |
|  | 11 | **Odor Control Units - Sewer PS-specific** |  | 2025-11-09 | 2027-01-04 |  |  |  |  |  |  |  |  |  |  |  |
| A102120 |  | Issue PO for Odor Control Units - Sewer PS-specific | 4d | 2025-11-09 A | 2025-11-30 A | A102680, A102980 | 100% |  | 2025-11-26 | 2025-11-30 |  |  |  |  |  | PROC |
| A102130 |  | Manufacturing for Odor Control Units - Sewer PS-specific | 90d | 2026-01-01 A | 2026-05-04 A | A102120 | 100% |  | 2026-06-08 | 2026-09-21 |  |  |  |  |  | PROC |
| A102180 |  | Delivery for Odor Control Units - Sewer PS-specific | 50d | 2026-04-01 A | 2026-05-21 A | A102130, A102710 | 100% |  | 2026-10-04 | 2026-12-01 |  |  | Contract Price Original Scope [244712] | 244,711.8 | 244,711.8 | PROC |
| A102710 |  | Custom Clearance for Odor Control Units - Sewer PS-specific | 20d | 2026-04-01 A | 2026-04-13 A | A102130 | 100% |  | 2026-09-27 | 2026-10-20 |  |  |  |  |  | PROC |
| A102720 |  | Staging Time for Odor Control Units - Sewer PS-specific | 30d | 2026-11-30 | 2027-01-04 | A102180 |  |  |  |  | -29.21d | 0d |  |  |  | PROC |
|  | 21 | **Short Lead Items** |  | 2025-07-25 | 2027-03-27 |  |  |  |  |  |  |  |  |  |  |  |
|  | 1 | **Asphalt** |  | 2025-11-19 | 2027-01-05 |  |  |  |  |  |  |  |  |  |  |  |
| A1160 |  | Issue PO for Asphalt | 4d | 2025-11-19 A | 2025-11-30 A | A102720, A103000 | 100% |  | 2027-01-16 | 2027-01-20 |  |  |  |  |  | PROC |
| A102730 |  | Delivery for Asphalt Phase 1 | 21d | 2025-12-01 A | 2027-01-05 | A1160 | 99% | 0.21d | 2027-01-25 | 2027-02-28 | 27.58d | 0d | Contract Price Original Scope [211912] | 211,911.89 | 209,792.77 | PROC |
| A103740 |  | Delivery for Asphalt Phase 2 | 21d | 2025-12-08 A | 2027-01-05 | A1160, A102730 | 99% | 0.21d | 2027-03-01 | 2027-04-03 | 27.58d | 0d | Contract Price Original Scope [211912] | 211,911.89 | 209,792.77 | PROC |
| A103750 |  | Delivery for Asphalt Phase 3 | 21d | 2025-12-14 A | 2027-01-05 | A1160, A103740 | 99% | 0.21d | 2027-04-03 | 2027-04-27 | 71.66d | 60.11d | Contract Price Original Scope [211912] | 211,911.89 | 209,792.77 | PROC |
|  | 8 | **Pipes (HDPE / uPVC) - For potable, irrigation, sewer, storm** |  | 2025-08-01 | 2026-01-14 |  |  |  |  |  |  |  |  |  |  |  |
| A102100 |  | Issue PO for Pipes (HDPE / uPVC) - For potable, irrigation, sewer, storm | 4d | 2025-08-01 A | 2025-08-06 A | A103020 | 100% |  | 2025-07-31 | 2025-08-04 |  |  |  |  |  | PROC |
| A102110 |  | Manufacturing for Pipes (HDPE / uPVC) - For potable, irrigation, sewer, storm | 30d | 2025-08-06 A | 2025-12-14 A | A102100 | 100% |  | 2025-08-23 | 2025-09-27 |  |  |  |  |  | PROC |
| A102190 |  | Delivery for Pipes (HDPE / uPVC) - For potable, irrigation, sewer, storm | 20d | 2025-08-10 A | 2025-12-08 A | A102110 | 100% |  | 2025-09-28 | 2025-10-20 |  |  | Contract Price Original Scope [9183833] | 9,183,832.74 | 9,183,832.74 | PROC |
| A102740 |  | Staging Time for Pipes (HDPE / uPVC) - For potable, irrigation, sewer, storm | 30d | 2026-01-01 A | 2026-01-14 A | A102190 | 100% |  | 2026-01-17 | 2026-02-24 |  |  |  |  |  | PROC |
|  | 9 | **Valves (Gate, Air, NRV, Flow Control) - All water & drainage systems** |  | 2025-11-25 | 2026-04-13 |  |  |  |  |  |  |  |  |  |  |  |
| A102080 |  | Issue PO for Valves (Gate, Air, NRV, Flow Control) - All water & drainage systems | 4d | 2025-11-25 A | 2025-12-01 A | A103040 | 100% |  | 2025-11-29 | 2025-12-02 |  |  |  |  |  | PROC |
| A102090 |  | Manufacturing for Valves (Gate, Air, NRV, Flow Control) - All water & drainage systems | 60d | 2025-11-26 A | 2026-03-01 A | A102080 | 100% |  | 2025-12-01 | 2026-02-09 |  |  |  |  |  | PROC |
| A102160 |  | Delivery for Valves (Gate, Air, NRV, Flow Control) - All water & drainage systems | 15d | 2025-12-01 A | 2026-03-30 A | A102090 | 100% |  | 2026-02-09 | 2026-03-08 |  |  | Contract Price Original Scope [756189] | 756,189.36 | 756,189.36 | PROC |
| A102750 |  | Staging Time for Valves (Gate, Air, NRV, Flow Control) - All water & drainage systems | 30d | 2026-02-01 A | 2026-04-13 A | A102160 | 100% |  | 2026-05-04 | 2026-06-13 |  |  |  |  |  | PROC |

| ID | WBS | Activity | Duration | Start | Finish | Predecessors | Complete | Planned start | Planned finish | Resources | Cost | Actual cost | MOD-2937 |
| --- | --- | --- | --- | --- | --- | --- | --- | --- | --- | --- | --- | --- | --- |
|  | 5 | **Chambers (Valve / Flowmeter / Washout) - Sewer, Potable, Irrigation** |  | 2025-11-10 | 2026-03-31 |  |  |  |  |  |  |  |  |
| A101970 |  | Issue PO for Chambers (Valve / Flowmeter / Washout) - Sewer, Potable, Irrigation | 4d | 2025-11-10 A | 2025-11-14 A | A103060 | 100% | 2025-12-06 | 2025-12-09 |  |  |  | PROC |
| A101980 |  | Manufacturing for Chambers (Valve / Flowmeter / Washout) - Sewer, Potable, Irrigation | 30d | 2025-11-17 A | 2026-02-01 A | A101970 | 100% | 2025-12-10 | 2026-01-13 |  |  |  | PROC |
| A102030 |  | Delivery for Chambers (Valve / Flowmeter / Washout) - Sewer, Potable, Irrigation | 30d | 2025-11-24 A | 2026-03-02 A | A101980 | 100% | 2026-01-14 | 2026-02-19 | Contract Price Original Scope [1742940] | 1,742,940.17 | 1,742,940.17 | PROC |
| A102760 |  | Staging Time for Chambers (Valve / Flowmeter / Washout) - Sewer, Potable, Irrigation | 30d | 2026-01-01 A | 2026-03-31 A | A102030 | 100% | 2026-05-02 | 2026-06-09 |  |  |  | PROC |
|  | 7 | **Communication Ducts & Manholes - Telecom systems** |  | 2025-08-24 | 2027-01-16 |  |  |  |  |  |  |  |  |
| A101990 |  | Issue PO for Communication Ducts & Manholes - Telecom systems | 4d | 2025-08-24 A | 2025-08-31 A | A102680, A102130, A102720, A103080 | 100% | 2026-11-28 | 2026-12-02 |  |  |  | PROC |
| A102000 |  | Manufacturing for Communication Ducts & Manholes - Telecom systems | 45d | 2025-08-24 A | 2026-01-10 A | A101990 | 100% | 2026-12-02 | 2027-01-24 |  |  |  | PROC |
| A102050 |  | Delivery for Communication Ducts & Manholes - Telecom systems | 30d | 2025-11-24 A | 2027-01-16 A | A102000 | 100% | 2027-03-06 | 2027-04-15 | Contract Price Original Scope [393029] | 393,029.41 | 393,029.41 | PROC |
| A102770 |  | Staging Time for Communication Ducts & Manholes - Telecom systems | 30d | 2026-12-01 A | 2026-12-22 A | A102050 | 100% | 2027-01-21 | 2027-03-16 |  |  |  | PROC |
|  | 19 | **Air Vents / Washout Assemblies - Water networks** |  | 2025-12-13 | 2026-05-12 |  |  |  |  |  |  |  |  |
| A102410 |  | Issue PO for Air Vents / Washout Assemblies - Water networks | 4d | 2025-12-13 A | 2025-12-14 A | A103100 | 100% | 2025-12-20 | 2025-12-23 |  |  |  | PROC |
| A102420 |  | Manufacturing for Air Vents / Washout Assemblies - Water networks | 45d | 2025-12-15 A | 2026-04-01 A | A102410 | 100% | 2025-12-24 | 2026-02-14 |  |  |  | PROC |
| A102460 |  | Delivery for Air Vents / Washout Assemblies - Water networks | 30d | 2026-01-01 A | 2026-05-02 A | A102420 | 100% | 2026-02-15 | 2026-04-08 | Contract Price Original Scope [220936] | 220,936.06 | 220,936.06 | PROC |
| A102780 |  | Staging Time for Air Vents / Washout Assemblies - Water networks | 30d | 2026-02-01 A | 2026-05-12 A | A102460 | 100% | 2026-05-11 | 2026-06-20 |  |  |  | PROC |
|  | 14 | **Warning Tapes, Marker Posts - All underground works** |  | 2025-09-30 | 2025-12-15 |  |  |  |  |  |  |  |  |
| A102260 |  | Issue PO for Warning Tapes, Marker Posts - All underground works | 4d | 2025-09-30 A | 2025-09-30 A | A103120 | 100% | 2025-11-15 | 2025-11-18 |  |  |  | PROC |
| A102270 |  | Manufacturing for Warning Tapes, Marker Posts - All underground works | 19d | 2025-09-30 A | 2025-09-30 A | A102260 | 100% | 2025-11-19 | 2025-12-10 |  |  |  | PROC |
| A102320 |  | Delivery for Warning Tapes, Marker Posts - All underground works | 21d | 2025-09-30 A | 2025-10-04 A | A102270 | 100% | 2025-09-30 | 2025-10-23 |  |  |  | PROC |
| A102790 |  | Staging Time for Warning Tapes, Marker Posts - All underground works | 30d | 2025-12-13 A | 2025-12-15 A | A102320 | 100% | 2025-12-13 | 2026-01-15 |  |  |  | PROC |
|  | 17 | **Concrete (for culverts, pads, plinths) - Structural support works** |  | 2025-07-30 | 2026-06-15 |  |  |  |  |  |  |  |  |
| A102280 |  | Issue PO for Concrete (for culverts, pads, plinths) - Structural support works | 4d | 2025-07-30 A | 2025-07-30 A | A103140 | 100% | 2025-08-16 | 2025-08-19 |  |  |  | PROC |
| A102340 |  | Delivery for Concrete (for culverts, pads, plinths) - Structural support works P1 | 30d | 2025-11-25 A | 2025-12-06 A | A102280 | 100% | 2025-12-06 | 2026-01-08 | Contract Price Original Scope [617533] | 617,533.08 | 617,533.08 | PROC |
| A103760 |  | Delivery for Concrete (for culverts, pads, plinths) - Structural support works P2 | 30d | 2025-12-03 A | 2025-12-11 A | A102280, A102340 | 100% | 2025-12-23 | 2026-01-26 | Contract Price Original Scope [617533] | 617,533.08 | 617,533.08 | PROC |
| A103770 |  | Delivery for Concrete (for culverts, pads, plinths) - Structural support works P3 | 30d | 2025-12-09 A | 2025-12-10 A | A102280, A103760 | 100% | 2025-12-13 | 2026-01-15 | Contract Price Original Scope [617533] | 617,533.08 | 617,533.08 | PROC |
| A103780 |  | Delivery for Concrete (for culverts, pads, plinths) - Structural support works P4 | 30d | 2025-12-15 A | 2026-01-01 A | A102280, A103770 | 100% | 2025-12-20 | 2026-01-22 | Contract Price Original Scope [617533] | 617,533.08 | 617,533.08 | PROC |
| A103790 |  | Delivery for Concrete (for culverts, pads, plinths) - Structural support works P5 | 30d | 2026-01-01 A | 2026-01-08 A | A102280, A103780 | 100% | 2026-01-24 | 2026-03-08 | Contract Price Original Scope [617533] | 617,533.08 | 617,533.08 | PROC |
| A103800 |  | Delivery for Concrete (for culverts, pads, plinths) - Structural support works P6 | 30d | 2026-01-17 A | 2026-01-22 A | A102280, A103790 | 100% | 2026-01-24 | 2026-03-08 | Contract Price Original Scope [617533] | 617,533.08 | 617,533.08 | PROC |
| A103810 |  | Delivery for Concrete (for culverts, pads, plinths) - Structural support works P7 | 30d | 2026-01-17 A | 2026-01-29 A | A102280, A103800 | 100% | 2026-03-19 | 2026-04-28 | Contract Price Original Scope [617533] | 617,533.08 | 617,533.08 | PROC |
| A103820 |  | Delivery for Concrete (for culverts, pads, plinths) - Structural support works P8 | 30d | 2026-02-01 A | 2026-02-12 A | A102280, A103810 | 100% | 2026-04-28 | 2026-06-07 | Contract Price Original Scope [617533] | 617,533.08 | 617,533.08 | PROC |
| A103830 |  | Delivery for Concrete (for culverts, pads, plinths) - Structural support works P9 | 30d | 2026-03-01 A | 2026-03-31 A | A102280, A103820 | 100% | 2026-04-11 | 2026-05-14 | Contract Price Original Scope [617533] | 617,533.08 | 617,533.08 | PROC |
| A103840 |  | Delivery for Concrete (for culverts, pads, plinths) - Structural support works P10 | 30d | 2026-03-31 A | 2026-04-21 A | A102280, A103830 | 100% | 2026-05-02 | 2026-06-09 | Contract Price Original Scope [617533] | 617,533.08 | 617,533.08 | PROC |
| A103850 |  | Delivery for Concrete (for culverts, pads, plinths) - Structural support works P11 | 30d | 2026-04-01 A | 2026-04-14 A | A102280, A103840 | 100% | 2026-05-16 | 2026-06-23 | Contract Price Original Scope [617533] | 617,533.08 | 617,533.08 | PROC |
| A103860 |  | Delivery for Concrete (for culverts, pads, plinths) - Structural support works P12 | 30d | 2026-05-01 A | 2026-06-15 A | A102280, A103850 | 100% | 2026-06-20 | 2026-07-23 | Contract Price Original Scope [617533] | 617,533.08 | 617,533.08 | PROC |

| ID | WBS | Activity | Duration | Start | Finish | Predecessors | Complete | Remaining | Planned start | Planned finish | Total float | Free float | Calendar | Resources | Cost | Actual cost | MOD-2937 |
| --- | --- | --- | --- | --- | --- | --- | --- | --- | --- | --- | --- | --- | --- | --- | --- | --- | --- |
|  | 18 | **Steel (Rebar, Gratings, Ladders, Covers) - Structural & drainage items** |  | 2025-07-25 | 2026-06-17 |  |  |  |  |  |  |  |  |  |  |  |  |
| A102300 |  | Issue PO for Steel (Rebar, Gratings, Ladders, Covers) - Structural & drainage items | 4d | 2025-07-25 A | 2025-07-25 A | A103160 | 100% |  | 2025-07-31 | 2025-08-04 |  |  |  |  |  |  | PROC |
| A102310 |  | Manufacturing for Steel (Rebar, Gratings, Ladders, Covers) - Structural & drainage items | 21d | 2025-07-25 A | 2026-05-20 A | A102300 | 100% |  | 2025-08-23 | 2025-09-15 |  |  |  |  |  |  | PROC |
| A102330 |  | Delivery for Steel (Rebar, Gratings, Ladders, Covers) - Structural & drainage items | 7d | 2025-08-10 A | 2026-06-13 A | A102310 | 100% |  | 2025-09-16 | 2025-09-24 |  |  |  | Contract Price Original Scope [3220153] | 3,220,152.98 | 3,220,152.98 | PROC |
| A102810 |  | Staging Time for Steel (Rebar, Gratings, Ladders, Covers) - Structural & drainage items | 30d | 2025-11-12 A | 2026-06-17 A | A102330 | 100% |  | 2026-05-09 | 2026-06-17 |  |  |  |  |  |  | PROC |
|  | 15 | **Interlock Tiles / Curbstone - Roads, Sidewalks, Landscape** |  | 2025-11-03 | 2026-12-07 |  |  |  |  |  |  |  |  |  |  |  |  |
| A102370 |  | Issue PO for Interlock Tiles / Curbstone - Roads, Sidewalks, Landscape | 4d | 2025-11-03 A | 2025-11-14 A | A102790, A103180, A102780 | 100% |  | 2026-07-11 | 2026-07-14 |  |  |  |  |  |  | PROC |
| A102380 |  | Manufacturing for Interlock Tiles / Curbstone - Roads, Sidewalks, Landscape | 30d | 2026-01-01 A | 2026-11-17 | A102370 | 99% | 0.3d | 2026-05-23 | 2026-06-30 | 7.2d | 0d |  |  |  |  | PROC |
| A102400 |  | Delivery for Interlock Tiles / Curbstone - Roads, Sidewalks, Landscape | 30d | 2026-04-01 A | 2026-11-18 | A102380 | 99% | 0.3d | 2026-06-29 | 2026-08-03 | 7.2d | 0d |  | Contract Price Original Scope [250913] | 250,912.8 | 248,403.67 | PROC |
| A102820 |  | Staging Time for Interlock Tiles / Curbstone - Roads, Sidewalks, Landscape | 30d | 2026-07-04 A | 2026-12-07 | A102400 | 45% | 16.5d | 2026-08-04 | 2026-09-08 | 7.2d | 47.2d |  |  |  |  | PROC |
|  | 16 | **Landscaping Materials (Soil, Plants) - Final works, softscape** |  | 2026-11-18 | 2027-03-27 |  |  |  |  |  |  |  |  |  |  |  |  |
| A102350 |  | Issue PO for Landscaping Materials (Soil, Plants) - Final works, softscape | 4d | 2026-11-18 | 2026-11-23 | A102790, A103200, A102780 |  |  |  |  | -143.3d | 0d |  |  |  |  | PROC |
| A102360 |  | Manufacturing for Landscaping Materials (Soil, Plants) - Final works, softscape | 60d | 2026-11-23 | 2027-02-01 | A102350 |  |  |  |  | -143.3d | 0d |  |  |  |  | PROC |
| A102390 |  | Delivery for Landscaping Materials (Soil, Plants) - Final works, softscape | 30d | 2027-02-01 | 2027-03-27 | A102360 |  |  |  |  | -143.3d | 0d |  | Contract Price Original Scope [1615202] | 1,615,201.56 |  | PROC |
|  | 4 | **Construction** |  | 2025-05-19 | 2027-10-19 |  |  |  |  |  |  |  |  |  |  |  |  |
|  | 7 | **Zone 3** |  | 2025-09-15 | 2027-06-30 |  |  |  |  |  |  |  |  |  |  |  |  |
|  | 2 | **Sewerage Network Zone 3** |  | 2026-01-01 | 2027-05-26 |  |  |  |  |  |  |  |  |  |  |  |  |
|  | 3 | **Pipework: Supply, Installation, and Testing** |  | 2026-01-01 | 2026-11-30 |  |  |  |  |  |  |  |  |  |  |  |  |
|  | 1 | **UPVC Pipes Installation (150mm–315mm)** |  | 2026-04-01 | 2026-05-09 |  |  |  |  |  |  |  |  |  |  |  |  |
| MOD-SWN-PW-305 |  | Excavation and Trenching UPVC for Sewerage Network Zone 3 | 21d | 2026-04-01 A | 2026-05-01 A | A102500, A102190, A1600 | 100% |  | 2026-05-16 | 2026-06-05 |  |  | 7-Day Workweek-9 | Contract Price Original Scope [36594.2]; Excavator Operator [344.83 h]; Laborer [689.66 h] | 36,594.15 | 36,594.15 | SW |
| MOD-SWN-PW-315 |  | Lean Concrete / Bedding UPVC for Sewerage Network Zone 3 | 7d | 2026-04-02 A | 2026-05-02 A | MOD-SWN-PW-305 | 100% |  | 2026-06-06 | 2026-06-12 |  |  | 7-Day Workweek-9 | Contract Price Original Scope [9148.54]; Laborer [160 h] | 9,148.54 | 9,148.54 | SW |
| MOD-SWN-PW-265 |  | UPVC Pipes Installation (150mm–315mm) UPVC for Sewerage Network Zone 3 | 13d | 2026-04-04 A | 2026-05-03 A | MOD-SWN-PW-305, MOD-SWN-PW-315, A1650 | 100% |  | 2026-06-13 | 2026-06-25 |  |  | 7-Day Workweek-9 | Contract Price Original Scope [82336.8]; Excavator Operator [23.64 h]; Pipefitter [47.27 h]; Laborer [47.27 h] | 82,336.83 | 82,336.83 | SW |
| MOD-SWN-PW-325 |  | Test (Pressure - Slope) UPVC for Sewerage Network Zone 3 | 15d | 2026-04-05 A | 2026-05-05 A | MOD-SWN-PW-265 | 100% |  | 2026-06-26 | 2026-07-10 |  |  | 7-Day Workweek-9 | Contract Price Original Scope [18297.1]; Pipefitter [10 h]; Technician [10 h] | 18,297.07 | 18,297.07 | SW |
| MOD-SWN-PW-335 |  | Coating / Wrapping UPVC for Sewerage Network Zone 3 | 15d | 2026-04-08 A | 2026-05-07 A | MOD-SWN-PW-325 | 100% |  | 2026-07-11 | 2026-07-25 |  |  | 7-Day Workweek-9 | Contract Price Original Scope [18297.1]; Laborer [300 h] | 18,297.07 | 18,297.07 | SW |
| MOD-SWN-PW-295 |  | Backfilling & Warrning Tape UPVC for Sewerage Network Zone 3 | 15d | 2026-04-10 A | 2026-05-09 A | MOD-SWN-PW-285, MOD-SWN-PW-335, MOD-GEI-PL-001 | 100% |  | 2026-06-13 | 2026-06-28 |  |  | 7-Day Workweek-9 | Contract Price Original Scope [18297.1]; Compactor Operator [0.02 h]; Laborer [0.04 h] | 18,297.07 | 18,297.07 | SW |

| ID | WBS | Activity | Duration | Start | Finish | Predecessors | Complete | Remaining | Planned start | Planned finish | Total float | Free float | Calendar | Resources | Cost | Actual cost | MOD-2937 |
| --- | --- | --- | --- | --- | --- | --- | --- | --- | --- | --- | --- | --- | --- | --- | --- | --- | --- |
|  | 2 | **GRP Pipes Installation (400mm–700mm)** |  | 2026-04-16 | 2026-05-23 |  |  |  |  |  |  |  |  |  |  |  |  |
| MOD-SWN-PW-355 |  | Excavation and Trenching GRP for Sewerage Network Zone 3 | 21d | 2026-04-16 A | 2026-05-14 A | A102500, A102190, A1600 | 100% |  | 2026-05-16 | 2026-06-05 |  |  | 7-Day Workweek-9 | Contract Price Original Scope [16514.1]; Excavator Operator [344.83 h]; Laborer [689.66 h] | 16,514.13 | 16,514.13 | SW |
| MOD-SWN-PW-365 |  | Lean Concrete / Bedding GRP for Sewerage Network Zone 3 | 7d | 2026-04-18 A | 2026-05-18 A | MOD-SWN-PW-355, MOD-SWN-PW-355 FF | 100% |  | 2026-06-06 | 2026-06-12 |  |  | 7-Day Workweek-9 | Contract Price Original Scope [4128.53]; Laborer [160 h] | 4,128.53 | 4,128.53 | SW |
| MOD-SWN-PW-275 |  | GRP Pipes Installation (400mm–700mm) GRP for Sewerage Network Zone 3 | 21d | 2026-04-19 A | 2026-05-19 A | MOD-SWN-PW-265 SS, MOD-SWN-PW-365, A102560, A1650 | 100% |  | 2026-06-13 | 2026-07-03 |  |  | 7-Day Workweek-9 | Contract Price Original Scope [37156.8]; Crane Operator [103.64 h]; Pipefitter [207.27 h]; Laborer [310.91 h] | 37,156.79 | 37,156.79 | SW |
| MOD-SWN-PW-375 |  | Test (Pressure - Slope) GRP for Sewerage Network Zone 3 | 15d | 2026-04-20 A | 2026-05-20 A | MOD-SWN-PW-275 | 100% |  | 2026-07-04 | 2026-07-18 |  |  | 7-Day Workweek-9 | Contract Price Original Scope [8257.06]; Pipefitter [10 h]; Technician [10 h] | 8,257.06 | 8,257.06 | SW |
| MOD-SWN-PW-385 |  | Coating / Wrapping GRP for Sewerage Network Zone 3 | 15d | 2026-04-22 A | 2026-05-21 A | MOD-SWN-PW-375, MOD-SWN-PW-375 FF | 100% |  | 2026-07-19 | 2026-08-02 |  |  | 7-Day Workweek-9 | Contract Price Original Scope [8257.06]; Laborer [300 h] | 8,257.06 | 8,257.06 | SW |
| MOD-SWN-PW-345 |  | Backfilling & Warrning Tape GRP for Sewerage Network Zone 3 | 15d | 2026-04-25 A | 2026-05-23 A | MOD-SWN-PW-385, MOD-SWN-PW-385 FF, MOD-GEI-PL-001 | 100% |  | 2026-08-03 | 2026-08-17 |  |  | 7-Day Workweek-9 | Contract Price Original Scope [8257.06]; Compactor Operator [0.02 h]; Laborer [0.04 h] | 8,257.06 | 8,257.06 | SW |
|  | 3 | **HDPE Pressure Pipes Installation (250mm–630mm)** |  | 2026-01-01 | 2026-11-30 |  |  |  |  |  |  |  |  |  |  |  |  |
| MOD-SWN-PW-405 |  | Excavation and Trenching HDPE for Sewerage Network Zone 3 | 21d | 2026-01-01 A | 2026-04-02 A | A102500, A102190, A1600 | 100% |  | 2026-03-28 | 2026-04-17 |  |  | 7-Day Workweek-9 | Contract Price Original Scope [20836.7]; Excavator Operator [344.83 h]; Laborer [689.66 h] | 20,836.71 | 20,836.71 | SW |
| MOD-SWN-PW-415 |  | Lean Concrete / Bedding HDPE for Sewerage Network Zone 3 | 7d | 2026-02-01 A | 2026-04-11 A | MOD-SWN-PW-405, MOD-SWN-PW-405 FF | 100% |  | 2026-04-18 | 2026-04-24 |  |  | 7-Day Workweek-9 | Contract Price Original Scope [5209.18]; Laborer [160 h] | 5,209.18 | 5,209.18 | SW |
| MOD-SWN-PW-285 |  | HDPE Pressure Pipes Installation (250mm–630mm) HDPE for Sewerage Network Zone 3 | 21d | 2026-02-10 A | 2026-04-20 A | MOD-SWN-PW-275 SS, MOD-SWN-PW-415, A1650 | 100% |  | 2026-04-25 | 2026-05-15 |  |  | 7-Day Workweek-9 | Contract Price Original Scope [46882.6]; Pipefitter [130.56 h]; Laborer [261.11 h]; Welder [130.56 h] | 46,882.61 | 46,882.61 | SW |
| MOD-SWN-PW-425 |  | Test (Pressure - Slope) HDPE for Sewerage Network Zone 3 | 15d | 2026-02-23 A | 2026-11-09 | MOD-SWN-PW-285 | 80% | 3d | 2026-05-16 | 2026-05-30 | 112.38d | 0d | 7-Day Workweek-9 | Contract Price Original Scope [10418.4]; Pipefitter [10 h]; Technician [10 h] | 10,418.36 | 8,334.69 | SW |
| MOD-SWN-PW-435 |  | Coating / Wrapping HDPE for Sewerage Network Zone 3 | 15d | 2026-03-01 A | 2026-11-15 | MOD-SWN-PW-425, MOD-SWN-PW-425 FF | 60% | 6d | 2026-06-02 | 2026-06-17 | 112.38d | 0d | 7-Day Workweek-9 | Contract Price Original Scope [10418.4]; Laborer [300 h] | 10,418.36 | 6,251.01 | SW |
| MOD-SWN-PW-395 |  | Backfilling & Warrning Tape HDPE for Sewerage Network Zone 3 | 15d | 2026-11-16 | 2026-11-30 | MOD-SWN-PW-435, MOD-SWN-PW-435 FF, MOD-GEI-PL-001 |  |  |  |  | 112.38d | 44.9d | 7-Day Workweek-9 | Contract Price Original Scope [10418.4]; Compactor Operator [0.02 h]; Laborer [0.04 h] | 10,418.36 |  | SW |
|  | 4 | **Fittings and Valves** |  | 2026-11-07 | 2026-12-07 |  |  |  |  |  |  |  |  |  |  |  |  |
| MOD-SWN-FV-55 |  | Supply & Installation of HDPE Elbows for Sewerage Network Zone 3 | 6d | 2026-11-07 | 2026-11-12 | MOD-SWN-PW-285 |  |  |  |  | 75.08d | 0d |  | Contract Price Original Scope [6826.21]; Pipefitter [59.88 h]; Welder [59.88 h] | 6,826.21 |  | SW |
| MOD-SWN-FV-65 |  | Gate Valves Installation for Sewerage Network Zone 3 | 4d | 2026-11-14 | 2026-11-17 | MOD-SWN-FV-55, A102750 |  |  |  |  | 75.08d | 0d |  | Contract Price Original Scope [4830.3]; Laborer [2.08 h]; Plumber [2.08 h] | 4,830.3 |  | SW |
| MOD-SWN-FV-75 |  | Drain Valves Installation for Sewerage Network Zone 3 | 4d | 2026-11-18 | 2026-11-22 | MOD-SWN-FV-65 |  |  |  |  | 75.08d | 0d |  | Contract Price Original Scope [4392.82]; Laborer [2.88 h]; Plumber [2.88 h] | 4,392.82 |  | SW |
| MOD-SWN-FV-85 |  | Air Breather & Air Release Valves Installation for Sewerage Network Zone 3 | 10d | 2026-11-23 | 2026-12-03 | MOD-SWN-FV-75, A102780 |  |  |  |  | 75.08d | 0d |  | Contract Price Original Scope [11590.7]; Mechanical Technician [3.6 h]; Laborer [3.6 h] | 11,590.74 |  | SW |
| MOD-SWN-FV-95 |  | Jointing & Piping Accessories Installation for Sewerage Network Zone 3 | 3d | 2026-12-05 | 2026-12-07 | MOD-SWN-FV-85 |  |  |  |  | 75.08d | 32.9d |  | Contract Price Original Scope [3071.12]; Pipefitter [60.06 h] | 3,071.12 |  | SW |
|  | 6 | **Valve & Flow Meter Chambers** |  | 2026-06-08 | 2027-01-14 |  |  |  |  |  |  |  |  |  |  |  |  |
|  | 1 | **Valve Chambers Construction** |  | 2026-06-08 | 2026-12-18 |  |  |  |  |  |  |  |  |  |  |  |  |
| MOD-SWN-PW-815 |  | Excavation Valve Chamber for Sewerage Network Zone 3 | 21d | 2026-06-08 A | 2026-11-14 | A102500, A102190, A1600 | 65% | 7.35d | 2026-09-19 | 2026-10-09 | 67.48d | 0d | 7-Day Workweek-9 | Contract Price Original Scope [1034.11]; Excavator Operator [344.83 h]; Laborer [689.66 h] | 1,034.11 | 672.17 | SW |
| MOD-SWN-PW-825 |  | Lean Concrete / Bedding Valve Chamber for Sewerage Network Zone 3 | 21d | 2026-07-22 A | 2026-11-23 | MOD-SWN-PW-815, MOD-SWN-PW-815 FF, MOD-SWN-PW-815 SS | 55% | 9.45d | 2026-10-10 | 2026-10-30 | 67.48d | 0d | 7-Day Workweek-9 | Contract Price Original Scope [689.41]; Laborer [160 h] | 689.41 | 379.17 | SW |
| MOD-SWN-VF-84 |  | Valve Chambers Construction Valve Chamber for Sewerage Network Zone 3 | 6d | 2026-07-31 A | 2026-11-26 | MOD-SWN-PW-825 | 55% | 2.7d | 2026-10-31 | 2026-11-05 | 67.48d | 0d | 7-Day Workweek-9 | Contract Price Original Scope [3102.33]; Mason [5 h]; Laborer [5 h]; Technician [5 h] | 3,102.33 | 1,706.28 | SW |
| MOD-SWN-PW-835 |  | Test Valve Chamber for Sewerage Network Zone 3 | 15d | 2026-08-04 A | 2026-12-03 | MOD-SWN-VF-84 | 55% | 6.75d | 2026-10-17 | 2026-11-01 | 95.13d | 0d | 7-Day Workweek-9 | Contract Price Original Scope [689.41]; Pipefitter [10 h]; Technician [10 h] | 689.41 | 379.17 | SW |
| MOD-SWN-PW-805 |  | Backfilling Valve Chamber for Sewerage Network Zone 3 | 15d | 2026-12-03 | 2026-12-18 | MOD-SWN-PW-835, MOD-GEI-PL-001 |  |  |  |  | 95.13d | 27.65d | 7-Day Workweek-9 | Contract Price Original Scope [1378.81]; Compactor Operator [0.02 h]; Laborer [0.04 h] | 1,378.81 |  | SW |

| ID | WBS | Activity | Duration | Start | Finish | Predecessors | Complete | Remaining | Planned start | Planned finish | Total float | Free float | Calendar | Resources | Cost | Actual cost | MOD-2937 |
| --- | --- | --- | --- | --- | --- | --- | --- | --- | --- | --- | --- | --- | --- | --- | --- | --- | --- |
|  | 2 | **Water Drain Chambers Construction** |  | 2026-06-16 | 2027-01-04 |  |  |  |  |  |  |  |  |  |  |  |  |
| MOD-SWN-PW-855 |  | Excavation Water Drain Chamber for Sewerage Network Zone 3 | 21d | 2026-06-16 A | 2026-11-12 | A102500, A102190, A1600 | 75% | 5.25d | 2026-09-19 | 2026-10-09 | 74.38d | 0d | 7-Day Workweek-9 | Contract Price Original Scope [3359.14]; Excavator Operator [344.83 h]; Laborer [689.66 h] | 3,359.14 | 2,519.36 | SW |
| MOD-SWN-PW-865 |  | Lean Concrete / Bedding Water Drain Chamber for Sewerage Network Zone 3 | 21d | 2026-06-23 A | 2026-11-19 | MOD-SWN-PW-855, MOD-SWN-PW-855 FF, MOD-SWN-PW-855 SS | 65% | 7.35d | 2026-10-10 | 2026-10-30 | 74.38d | 6.9d | 7-Day Workweek-9 | Contract Price Original Scope [2239.43]; Laborer [160 h] | 2,239.43 | 1,455.63 | SW |
| MOD-SWN-VF-94 |  | Water Drain Chambers Construction Water Drain Chamber for Sewerage Network Zone 3 | 19d | 2026-07-01 A | 2026-12-05 | MOD-SWN-VF-84, MOD-SWN-PW-865 | 55% | 8.55d | 2026-10-10 | 2026-10-29 | 67.48d | 0d | 7-Day Workweek-9 | Contract Price Original Scope [10077.4]; Mason [5 h]; Laborer [5 h]; Technician [5 h] | 10,077.42 | 5,542.58 | SW |
| MOD-SWN-PW-875 |  | Test Water Drain Chamber for Sewerage Network Zone 3 | 15d | 2026-12-05 | 2026-12-20 | MOD-SWN-VF-94 |  |  |  |  | 78.33d | 0d | 7-Day Workweek-9 | Contract Price Original Scope [2239.43]; Pipefitter [10 h]; Technician [10 h] | 2,239.43 |  | SW |
| MOD-SWN-PW-845 |  | Backfilling Water Drain Chamber for Sewerage Network Zone 3 | 15d | 2026-12-20 | 2027-01-04 | MOD-SWN-PW-875, MOD-GEI-PL-001 |  |  |  |  | 78.33d | 10.85d | 7-Day Workweek-9 | Contract Price Original Scope [4478.86]; Compactor Operator [0.02 h]; Laborer [0.04 h] | 4,478.86 |  | SW |
|  | 3 | **Discharge Chambers Construction** |  | 2026-07-01 | 2027-01-09 |  |  |  |  |  |  |  |  |  |  |  |  |
| MOD-SWN-PW-895 |  | Excavation Discharge Chamber for Sewerage Network Zone 3 | 21d | 2026-07-01 A | 2026-11-14 | A102500, A102190, A1600 | 65% | 7.35d | 2026-09-19 | 2026-10-09 | 79.78d | 0d | 7-Day Workweek-9 | Contract Price Original Scope [2346.54]; Excavator Operator [344.83 h]; Laborer [689.66 h] | 2,346.54 | 1,525.25 | SW |
| MOD-SWN-PW-905 |  | Lean Concrete / Bedding Discharge Chamber for Sewerage Network Zone 3 | 21d | 2026-07-15 A | 2026-11-22 | MOD-SWN-PW-895, MOD-SWN-PW-895 FF, MOD-SWN-PW-895 SS | 62% | 7.98d | 2026-10-10 | 2026-10-30 | 79.78d | 12.3d | 7-Day Workweek-9 | Contract Price Original Scope [1564.36]; Laborer [160 h] | 1,564.36 | 969.9 | SW |
| MOD-SWN-VF-104 |  | Discharge Chambers Construction Discharge Chamber for Sewerage Network Zone 3 | 13d | 2026-08-01 A | 2026-12-10 | MOD-SWN-VF-94, MOD-SWN-PW-905 | 59% | 5.33d | 2026-10-31 | 2026-11-12 | 67.48d | 0d | 7-Day Workweek-9 | Contract Price Original Scope [7039.63]; Mason [5 h]; Laborer [5 h]; Technician [5 h] | 7,039.63 | 4,153.38 | SW |
| MOD-SWN-PW-915 |  | Test Discharge Chamber for Sewerage Network Zone 3 | 15d | 2026-12-10 | 2026-12-25 | MOD-SWN-VF-104 |  |  |  |  | 72.48d | 0d | 7-Day Workweek-9 | Contract Price Original Scope [1564.36]; Pipefitter [10 h]; Technician [10 h] | 1,564.36 |  | SW |
| MOD-SWN-PW-885 |  | Backfilling Discharge Chamber for Sewerage Network Zone 3 | 15d | 2026-12-25 | 2027-01-09 | MOD-SWN-PW-915, MOD-GEI-PL-001 |  |  |  |  | 72.48d | 5d | 7-Day Workweek-9 | Contract Price Original Scope [3128.72]; Compactor Operator [0.02 h]; Laborer [0.04 h] | 3,128.72 |  | SW |
|  | 4 | **Flow Meter Chambers Construction** |  | 2026-07-14 | 2027-01-14 |  |  |  |  |  |  |  |  |  |  |  |  |
| MOD-SWN-PW-935 |  | Excavation Flow Meter Chamber for Sewerage Network Zone 3 | 21d | 2026-07-14 A | 2026-11-15 | A102500, A102190, A1600 | 60% | 8.4d | 2026-09-19 | 2026-10-09 | 80.38d | 0d | 7-Day Workweek-9 | Contract Price Original Scope [748.87]; Excavator Operator [344.83 h]; Laborer [689.66 h] | 748.87 | 449.32 | SW |
| MOD-SWN-PW-945 |  | Lean Concrete / Bedding Flow Meter Chamber for Sewerage Network Zone 3 | 21d | 2026-07-29 A | 2026-11-27 | MOD-SWN-PW-935, MOD-SWN-PW-935 FF, MOD-SWN-PW-935 SS | 40% | 12.6d | 2026-10-10 | 2026-10-30 | 80.38d | 12.9d | 7-Day Workweek-9 | Contract Price Original Scope [499.24]; Laborer [160 h] | 499.24 | 199.7 | SW |
| MOD-SWN-VF-114 |  | Flow Meter Chambers Construction Flow Meter Chamber for Sewerage Network Zone 3 | 5d | 2026-12-10 | 2026-12-15 | MOD-SWN-VF-104, MOD-SWN-PW-945 |  |  |  |  | 67.48d | 0d | 7-Day Workweek-9 | Contract Price Original Scope [2246.6]; Mason [5 h]; Laborer [5 h]; Technician [5 h] | 2,246.6 |  | SW |
| MOD-SWN-PW-955 |  | Test Flow Meter Chamber for Sewerage Network Zone 3 | 15d | 2026-12-15 | 2026-12-30 | MOD-SWN-VF-114 |  |  |  |  | 67.48d | 0d | 7-Day Workweek-9 | Contract Price Original Scope [499.24]; Pipefitter [10 h]; Technician [10 h] | 499.24 |  | SW |
| MOD-SWN-PW-925 |  | Backfilling Flow Meter Chamber for Sewerage Network Zone 3 | 15d | 2026-12-30 | 2027-01-14 | MOD-SWN-PW-955, MOD-GEI-PL-001 |  |  |  |  | 67.48d | 0d | 7-Day Workweek-9 | Contract Price Original Scope [998.49]; Compactor Operator [0.02 h]; Laborer [0.04 h] | 998.49 |  | SW |
|  | 7 | **Manholes** |  | 2026-01-01 | 2026-12-28 |  |  |  |  |  |  |  |  |  |  |  |  |
| MOD-SWN-MH-95 |  | Depth Variation for Manholes for Sewerage Network Zone 3 | 8d | 2026-01-01 A | 2026-03-10 A | A102600 | 100% |  | 2026-05-04 | 2026-05-13 |  |  |  | Contract Price Original Scope [94.15]; Laborer [16 h]; Surveyor [16 h] | 94.15 | 94.15 | SW |
|  | 1 | **1200mm GRP Manholes with Backdrop** |  | 2026-01-01 | 2026-02-13 |  |  |  |  |  |  |  |  |  |  |  |  |
| MOD-SWN-PW-1615 |  | Excavation 1.2m GRP for Sewerage Network Zone 3 | 21d | 2026-01-01 A | 2026-01-10 A | A102500, A102190, A1600 | 100% |  | 2026-05-16 | 2026-06-05 |  |  | 7-Day Workweek-9 | Contract Price Original Scope [63394.4]; Excavator Operator [344.83 h]; Laborer [689.66 h] | 63,394.37 | 63,394.37 | SW |
| MOD-SWN-PW-1625 |  | Lean Concrete / Bedding 1.2m GRP for Sewerage Network Zone 3 | 21d | 2026-01-10 A | 2026-01-20 A | MOD-SWN-PW-1615, MOD-SWN-PW-1615 FF, MOD-SWN-PW-1615 SS | 100% |  | 2026-06-06 | 2026-06-26 |  |  | 7-Day Workweek-9 | Contract Price Original Scope [42262.9]; Laborer [160 h] | 42,262.91 | 42,262.91 | SW |
| MOD-SWN-MH-185 |  | 1200mm GRP Manholes with Backdrop 1.2m GRP for Sewerage Network Zone 3 | 21d | 2026-01-13 A | 2026-01-23 A | MOD-SWN-PW-1625 | 100% |  | 2026-06-27 | 2026-07-17 |  |  | 7-Day Workweek-9 | Contract Price Original Scope [190183]; Boom Truck Operator [130.04 h]; Laborer [260.08 h] | 190,183.11 | 190,183.11 | SW |
| MOD-SWN-PW-1635 |  | Test 1.2m GRP for Sewerage Network Zone 3 | 15d | 2026-01-24 A | 2026-01-31 A | MOD-SWN-MH-185 | 100% |  | 2026-07-18 | 2026-08-01 |  |  | 7-Day Workweek-9 | Contract Price Original Scope [42262.9]; Pipefitter [10 h]; Technician [10 h] | 42,262.91 | 42,262.91 | SW |
| MOD-SWN-PW-1605 |  | Backfilling 1.2m GRP for Sewerage Network Zone 3 | 15d | 2026-02-01 A | 2026-02-13 A | MOD-SWN-PW-1635, MOD-GEI-PL-001 | 100% |  | 2026-08-02 | 2026-08-16 |  |  | 7-Day Workweek-9 | Contract Price Original Scope [84525.8]; Compactor Operator [0.02 h]; Laborer [0.04 h] | 84,525.83 | 84,525.83 | SW |

| ID | WBS | Activity | Duration | Start | Finish | Predecessors | Complete | Remaining | Planned start | Planned finish | Total float | Free float | Calendar | Resources | Cost | Actual cost | MOD-2937 |
| --- | --- | --- | --- | --- | --- | --- | --- | --- | --- | --- | --- | --- | --- | --- | --- | --- | --- |
|  | 2 | **1500mm GRP Manholes (Standard & Backdrop)** |  | 2026-02-02 | 2026-12-18 |  |  |  |  |  |  |  |  |  |  |  |  |
| MOD-SWN-PW-1655 |  | Excavation 1.5m GRP for Sewerage Network Zone 3 | 21d | 2026-02-02 A | 2026-11-09 | A102500, A102190, A1600 | 90% | 2.1d | 2026-06-13 | 2026-07-03 | 84.58d | 0d | 7-Day Workweek-9 | Contract Price Original Scope [60039.7]; Excavator Operator [344.83 h]; Laborer [689.66 h] | 60,039.73 | 54,035.76 | SW |
| MOD-SWN-PW-1665 |  | Lean Concrete / Bedding 1.5m GRP for Sewerage Network Zone 3 | 21d | 2026-03-10 A | 2026-11-14 | MOD-SWN-PW-1655, MOD-SWN-PW-1655 FF, MOD-SWN-PW-1655 SS | 84% | 3.36d | 2026-07-04 | 2026-07-24 | 84.58d | 0d | 7-Day Workweek-9 | Contract Price Original Scope [40026.5]; Laborer [160 h] | 40,026.49 | 33,622.25 | SW |
| MOD-SWN-MH-195 |  | 1500mm GRP Manholes (Standard & Backdrop) 1.5m GRP for Sewerage Network Zone 3 | 21d | 2026-03-18 A | 2026-11-18 | MOD-SWN-MH-185, MOD-SWN-PW-1665 | 80% | 4.2d | 2026-07-25 | 2026-08-14 | 84.58d | 0d | 7-Day Workweek-9 | Contract Price Original Scope [180119]; Boom Truck Operator [54.94 h]; Laborer [109.88 h] | 180,119.19 | 144,095.35 | SW |
| MOD-SWN-PW-1675 |  | Test 1.5m GRP for Sewerage Network Zone 3 | 15d | 2026-11-18 | 2026-12-03 | MOD-SWN-MH-195 |  |  |  |  | 94.83d | 0d | 7-Day Workweek-9 | Contract Price Original Scope [40026.5]; Pipefitter [10 h]; Technician [10 h] | 40,026.49 |  | SW |
| MOD-SWN-PW-1645 |  | Backfilling 1.5m GRP for Sewerage Network Zone 3 | 15d | 2026-12-03 | 2026-12-18 | MOD-SWN-PW-1675, MOD-GEI-PL-001 |  |  |  |  | 94.83d | 27.35d | 7-Day Workweek-9 | Contract Price Original Scope [80053]; Compactor Operator [0.02 h]; Laborer [0.04 h] | 80,052.97 |  | SW |
|  | 3 | **1800mm GRP Manholes (Standard & Backdrop)** |  | 2026-02-17 | 2026-12-22 |  |  |  |  |  |  |  |  |  |  |  |  |
| MOD-SWN-PW-1695 |  | Excavation 1.8m GRP for Sewerage Network Zone 3 | 21d | 2026-02-17 A | 2026-11-08 | A102500, A102190, A1600 | 92% | 1.68d | 2026-06-13 | 2026-07-03 | 90.25d | 0d | 7-Day Workweek-9 | Contract Price Original Scope [2995.23]; Excavator Operator [344.83 h]; Laborer [689.66 h] | 2,995.23 | 2,755.61 | SW |
| MOD-SWN-PW-1705 |  | Lean Concrete / Bedding 1.8m GRP for Sewerage Network Zone 3 | 21d | 2026-02-24 A | 2026-11-12 | MOD-SWN-PW-1695, MOD-SWN-PW-1695 FF, MOD-SWN-PW-1695 SS | 84% | 3.36d | 2026-07-04 | 2026-07-24 | 90.25d | 5.67d | 7-Day Workweek-9 | Contract Price Original Scope [1996.82]; Laborer [160 h] | 1,996.82 | 1,677.33 | SW |
| MOD-SWN-MH-205 |  | 1800mm GRP Manholes (Standard & Backdrop) 1.8m GRP for Sewerage Network Zone 3 | 17d | 2026-03-04 A | 2026-11-22 | MOD-SWN-MH-195, MOD-SWN-PW-1705 | 80% | 3.4d | 2026-08-15 | 2026-08-31 | 84.58d | 0d | 7-Day Workweek-9 | Contract Price Original Scope [8985.68]; Boom Truck Operator [3.32 h]; Laborer [6.63 h] | 8,985.68 | 7,188.54 | SW |
| MOD-SWN-PW-1715 |  | Test 1.8m GRP for Sewerage Network Zone 3 | 15d | 2026-11-22 | 2026-12-07 | MOD-SWN-MH-205 |  |  |  |  | 90.58d | 0d | 7-Day Workweek-9 | Contract Price Original Scope [1996.82]; Pipefitter [10 h]; Technician [10 h] | 1,996.82 |  | SW |
| MOD-SWN-PW-1685 |  | Backfilling 1.8m GRP for Sewerage Network Zone 3 | 15d | 2026-12-07 | 2026-12-22 | MOD-SWN-PW-1715, MOD-GEI-PL-001 |  |  |  |  | 90.58d | 23.1d | 7-Day Workweek-9 | Contract Price Original Scope [3993.63]; Compactor Operator [0.02 h]; Laborer [0.04 h] | 3,993.63 |  | SW |
|  | 4 | **2000mm GRP Manholes (Standard & Backdrop)** |  | 2026-02-15 | 2026-12-28 |  |  |  |  |  |  |  |  |  |  |  |  |
| MOD-SWN-PW-1735 |  | Excavation 2m GRP for Sewerage Network Zone 3 | 21d | 2026-02-15 A | 2026-11-08 | A102500, A102190, A1600 | 93% | 1.47d | 2026-06-13 | 2026-07-03 | 93.66d | 0d | 7-Day Workweek-9 | Contract Price Original Scope [948.53]; Excavator Operator [344.83 h]; Laborer [689.66 h] | 948.53 | 882.13 | SW |
| MOD-SWN-PW-1745 |  | Lean Concrete / Bedding 2m GRP for Sewerage Network Zone 3 | 21d | 2026-03-04 A | 2026-11-13 | MOD-SWN-PW-1735, MOD-SWN-PW-1735 FF, MOD-SWN-PW-1735 SS | 80% | 4.2d | 2026-07-04 | 2026-07-24 | 93.66d | 9.08d | 7-Day Workweek-9 | Contract Price Original Scope [632.35]; Laborer [160 h] | 632.35 | 505.88 | SW |
| MOD-SWN-MH-215 |  | 2000mm GRP Manholes (Standard & Backdrop) 2m GRP for Sewerage Network Zone 3 | 6d | 2026-06-03 A | 2026-11-28 | MOD-SWN-MH-205, MOD-SWN-PW-1745 | 60% | 2.4d | 2026-11-22 | 2026-11-28 | 84.58d | 0d | 7-Day Workweek-9 | Contract Price Original Scope [2845.59]; Boom Truck Operator [0.98 h]; Laborer [1.95 h] | 2,845.59 | 1,707.35 | SW |
| MOD-SWN-PW-1755 |  | Test 2m GRP for Sewerage Network Zone 3 | 15d | 2026-11-28 | 2026-12-13 | MOD-SWN-MH-215 |  |  |  |  | 84.58d | 0d | 7-Day Workweek-9 | Contract Price Original Scope [632.35]; Pipefitter [10 h]; Technician [10 h] | 632.35 |  | SW |
| MOD-SWN-PW-1725 |  | Backfilling 2m GRP for Sewerage Network Zone 3 | 15d | 2026-12-13 | 2026-12-28 | MOD-SWN-PW-1755, MOD-GEI-PL-001 |  |  |  |  | 84.58d | 17.1d | 7-Day Workweek-9 | Contract Price Original Scope [1264.7]; Compactor Operator [0.02 h]; Laborer [0.04 h] | 1,264.7 |  | SW |
|  | 5 | **Pumping Stations** |  | 2026-01-13 | 2027-05-26 |  |  |  |  |  |  |  |  |  |  |  |  |
|  | 9 | **Perimeter Walls & Gates** |  | 2026-05-04 | 2026-09-07 |  |  |  |  |  |  |  |  |  |  |  |  |
| MOD-SWN-PS-984 |  | Perimeter wall – PS3 for Sewerage Network Zone 3 | 21d | 2026-05-04 A | 2026-06-18 A | A102810, A102340 | 100% |  | 2026-06-04 | 2026-06-29 |  |  |  | Contract Price Original Scope [165917]; Excavator Operator [279.98 h]; Mason [559.96 h]; Laborer [559.96 h] | 165,917.29 | 165,917.29 | PS |
| MOD-SWN-PS-994 |  | Perimeter wall – PS4 for Sewerage Network Zone 3 | 21d | 2026-05-21 A | 2026-06-24 A | MOD-SWN-PS-984, A102810, A103760 | 100% |  | 2026-06-29 | 2026-07-23 |  |  |  | Contract Price Original Scope [165917]; Excavator Operator [279.98 h]; Mason [559.96 h]; Laborer [559.96 h] | 165,917.29 | 165,917.29 | PS |
| MOD-SWN-PS-1004 |  | Main entrance gates – PS3 & PS4 for Sewerage Network Zone 3 | 10d | 2026-07-31 A | 2026-08-19 A | MOD-SWN-PS-994 | 100% |  | 2026-08-08 | 2026-08-18 |  |  |  | Contract Price Original Scope [27650.4]; Crane Operator [100 h]; Welder [100 h]; Steel Fixer [200 h] | 27,650.44 | 27,650.44 | PS |
| MOD-SWN-PS-1014 |  | Personal entrance gate – PS3 & PS4 for Sewerage Network Zone 3 | 4d | 2026-07-31 A | 2026-09-07 A | MOD-SWN-PS-1004 SS | 100% |  | 2026-08-08 | 2026-08-11 |  |  |  | Contract Price Original Scope [9984.81]; Crane Operator [40 h]; Welder [40 h]; Steel Fixer [80 h] | 9,984.81 | 9,984.81 | PS |

| ID | WBS | Activity | Duration | Start | Finish | Predecessors | Complete | Remaining | Planned start | Planned finish | Total float | Free float | Resources | Cost | Actual cost | MOD-2937 |
| --- | --- | --- | --- | --- | --- | --- | --- | --- | --- | --- | --- | --- | --- | --- | --- | --- |
|  | 1 | **Sewage Pumps and MCC System** |  | 2026-11-30 | 2027-01-18 |  |  |  |  |  |  |  |  |  |  |  |
| MOD-SWN-PS-644 |  | Sewage pumps (2x30 l/s, 1x115 l/s) incl. MCC – PS3 for Sewerage Network Zone 3 | 21d | 2026-11-30 | 2026-12-24 | A102700, A102640 |  |  |  |  | 20.79d | 0d | Contract Price Original Scope [672075]; Crane Operator [120 h]; Electrician [240 h]; Plumber [120 h] | 672,075.04 |  | PS |
| MOD-SWN-PS-654 |  | Sewage pumps (2x100 l/s) incl. MCC – PS4 for Sewerage Network Zone 3 | 21d | 2026-12-24 | 2027-01-18 | MOD-SWN-PS-644, A102700, A102640 |  |  |  |  | 20.79d | 90.14d | Contract Price Original Scope [319406]; Crane Operator [500 h]; Electrician [1000 h]; Plumber [500 h] | 319,406.11 |  | PS |
|  | 2 | **Odor Control System** |  | 2026-08-01 | 2026-09-17 |  |  |  |  |  |  |  |  |  |  |  |
| MOD-SWN-PS-1134 |  | Odor control system – All stations (PS4) for Sewerage Network Zone 3 | 23d | 2026-08-01 A | 2026-09-17 A | MOD-SWN-PS-1124, A102180, A102720 | 100% |  | 2026-11-30 | 2026-12-27 |  |  | Contract Price Original Scope [138255]; Crane Operator [57.47 h]; Plumber [57.47 h] | 138,255.26 | 138,255.26 | PS |
| MOD-SWN-PS-1124 |  | Odor control system – All stations (PS3) for Sewerage Network Zone 3 | 23d | 2026-08-18 A | 2026-08-31 A | A102180, A102720 | 100% |  | 2026-11-03 | 2026-11-30 |  |  | Contract Price Original Scope [138255]; Crane Operator [57.47 h]; Plumber [57.47 h] | 138,255.26 | 138,255.26 | PS |
|  | 3 | **In-Line Booster Stations** |  | 2026-11-07 | 2027-01-18 |  |  |  |  |  |  |  |  |  |  |  |
| MOD-SWN-PS-674 |  | In-Line Booster Stations - Civil Works for Sewerage Network Zone 3 | 21d | 2026-11-07 | 2026-11-30 | MOD-SWN-PS-994 |  |  |  |  | 20.6d | 0d | Contract Price Original Scope [656073]; Crane Operator [420 h]; Laborer [1680 h] | 656,073.36 |  | PS |
| MOD-SWN-PS-1144 |  | In-Line Booster Stations - Mechanical Works for Sewerage Network Zone 3 | 21d | 2026-12-01 | 2026-12-24 | MOD-SWN-PS-674 |  |  |  |  | 20.6d | 0d | Contract Price Original Scope [656073]; Pipefitter [420 h]; Laborer [840 h] | 656,073.36 |  | PS |
| MOD-SWN-PS-1154 |  | In-Line Booster Stations - Electrical Works for Sewerage Network Zone 3 | 21d | 2026-12-26 | 2027-01-18 | MOD-SWN-PS-1144 |  |  |  |  | 20.6d | 89.95d | Contract Price Original Scope [656073]; Laborer [840 h]; Electrician [840 h] | 656,073.36 |  | PS |
|  | 7 | **Engine/Motor Control Center Buildings** |  | 2026-11-07 | 2026-11-15 |  |  |  |  |  |  |  |  |  |  |  |
| MOD-SWN-PS-934 |  | MCC Building – PS3 for Sewerage Network Zone 3 | 1d | 2026-11-07 | 2026-11-07 | MOD-SWN-PS-984 |  |  |  |  | -47.1d | 0d | Contract Price Original Scope [3888.46]; Crane Operator [10 h]; Carpenter [10 h]; Electrician [20 h] | 3,888.46 |  | PS |
| MOD-SWN-PS-944 |  | MCC Building – PS4 for Sewerage Network Zone 3 | 7d | 2026-11-08 | 2026-11-15 | MOD-SWN-PS-934, MOD-SWN-PS-994 |  |  |  |  | -14.7d | 54.65d | Contract Price Original Scope [42052.7]; Crane Operator [72.73 h]; Carpenter [72.73 h]; Electrician [145.45 h] | 42,052.73 |  | PS |
|  | 4 | **Valves and Fittings (General Supply & Installation)** |  | 2026-08-30 | 2026-12-10 |  |  |  |  |  |  |  |  |  |  |  |
| MOD-SWN-PS-714 |  | Valves, fittings, flow meters – PS3 for Sewerage Network Zone 3 | 2d | 2026-08-30 A | 2026-12-05 | A102620, MOD-SWN-PS-934 | 20% | 1.6d | 2026-10-03 | 2026-10-05 | -69.35d | 0d | Contract Price Original Scope [11924.6]; Laborer [20 h]; Plumber [40 h] | 11,924.59 | 2,384.92 | PS |
| MOD-SWN-PS-724 |  | Valves, fittings, flow meters – PS4 for Sewerage Network Zone 3 | 3d | 2026-09-01 A | 2026-12-08 | MOD-SWN-PS-714, A102620 | 20% | 2.4d | 2026-10-05 | 2026-10-08 | -69.35d | 0d | Contract Price Original Scope [14516.9]; Laborer [30.11 h]; Plumber [60.22 h] | 14,516.89 | 2,903.38 | PS |
| MOD-SWN-PS-734 |  | 35mm SS 316 mesh network – PS4 for Sewerage Network Zone 3 | 3d | 2026-09-08 A | 2026-12-10 | MOD-SWN-PS-724 | 20% | 2.4d | 2026-10-08 | 2026-10-12 | -69.35d | 0d | Contract Price Original Scope [17281.8]; Welder [30.03 h]; Steel Fixer [60.06 h] | 17,281.83 | 3,456.37 | PS |
|  | 5 | **Tank with Canopy** |  | 2026-12-10 | 2026-12-24 |  |  |  |  |  |  |  |  |  |  |  |
| MOD-SWN-PS-754 |  | Tank with canopy (per specs/drawings) - PS4 for Sewerage Network Zone 3 | 12d | 2026-12-10 | 2026-12-24 | MOD-SWN-PS-734 |  |  |  |  | -69.35d | 0d | Contract Price Original Scope [720080]; Crane Operator [119.72 h]; Welder [119.72 h]; Steel Fixer [239.44 h] | 720,080.25 |  | PS |
|  | 6 | **Pump Well and Valve Chambers** |  | 2026-12-24 | 2027-04-12 |  |  |  |  |  |  |  |  |  |  |  |
| MOD-SWN-PS-844 |  | Pump well & valve chamber structure – PS3 (2 wells, 5x5m, 11m depth) for Sewerage Network Zone 3 | 21d | 2026-12-24 | 2027-01-18 | A102760, A102810, MOD-SWN-PS-754 |  |  |  |  | -69.35d | 0d | Contract Price Original Scope [254390]; Excavator Operator [436.36 h]; Mason [872.73 h]; Laborer [872.73 h] | 254,390.01 |  | PS |
| MOD-SWN-PS-854 |  | Concrete wall (5x5x1m) inside PS3 well for Sewerage Network Zone 3 | 4d | 2027-01-18 | 2027-01-23 | MOD-SWN-PS-844, MOD-SWN-PS-934, A102760, A103800, A103790 |  |  |  |  | -12.05d | 0d | Contract Price Original Scope [19816.7]; Mason [80 h]; Laborer [80 h] | 19,816.65 |  | PS |
| MOD-SWN-PS-884 |  | Pump well & valve chamber structure – PS4 (1 well, 4m, 11m depth) for Sewerage Network Zone 3 | 22d | 2027-01-18 | 2027-02-17 | MOD-SWN-PS-844, MOD-SWN-PS-944, A102760, A102810 |  |  |  |  | -69.35d | 0d | Contract Price Original Scope [129465]; Excavator Operator [221.74 h]; Mason [443.48 h]; Laborer [443.48 h] | 129,464.76 |  | PS |
| MOD-SWN-PS-864 |  | Valve chamber – PS3 for Sewerage Network Zone 3 | 20d | 2027-01-23 | 2027-02-21 | MOD-SWN-PS-854, A102760 |  |  |  |  | -12.05d | 0d | Contract Price Original Scope [117056]; Mason [400 h]; Laborer [400 h] | 117,056.19 |  | PS |
| MOD-SWN-PS-894 |  | Valve chamber – PS4 for Sewerage Network Zone 3 | 21d | 2027-02-17 | 2027-03-28 | MOD-SWN-PS-884, A102760 |  |  |  |  | -69.35d | 0d | Contract Price Original Scope [124372]; Mason [425 h]; Laborer [425 h] | 124,372.2 |  | PS |
| MOD-SWN-PS-874 |  | Flow meter chamber – PS3 for Sewerage Network Zone 3 | 9d | 2027-02-21 | 2027-03-16 | MOD-SWN-PS-864, A102760 |  |  |  |  | -12.05d | 57.3d | Contract Price Original Scope [54872.1]; Mason [180.95 h]; Laborer [180.95 h] | 54,872.1 |  | PS |
| MOD-SWN-PS-904 |  | Flow meter chamber – PS4 for Sewerage Network Zone 3 | 13d | 2027-03-28 | 2027-04-12 | MOD-SWN-PS-894, A102760 |  |  |  |  | -69.35d | 0d | Contract Price Original Scope [73644.1]; Mason [261.54 h]; Laborer [261.54 h] | 73,644.14 |  | PS |

| ID | WBS | Activity | Duration | Start | Finish | Predecessors | Complete | Remaining | Planned start | Planned finish | Total float | Free float | Calendar | Resources | Cost | Actual cost | MOD-2937 |
| --- | --- | --- | --- | --- | --- | --- | --- | --- | --- | --- | --- | --- | --- | --- | --- | --- | --- |
|  | 8 | **Odor Control System Base/Plinth** |  | 2027-05-18 | 2027-05-25 |  |  |  |  |  |  |  |  |  |  |  |  |
| MOD-SWN-PS-954 |  | Concrete plinth below odor control – PS3 & PS4 for Sewerage Network Zone 3 | 6d | 2027-05-18 | 2027-05-25 | MOD-SWN-PS-1084, MOD-SWN-PS-904, A103790, A103810 |  |  |  |  | -69.35d | 0d |  | Contract Price Original Scope [16590.5]; Mason [59.97 h]; Laborer [59.97 h] | 16,590.51 |  | PS |
|  | 10 | **Lighting Works** |  | 2026-01-13 | 2027-05-26 |  |  |  |  |  |  |  |  |  |  |  |  |
| MOD-SWN-PS-1024 |  | 250W Flood Light installation – PS3 & PS4 for Sewerage Network Zone 3 | 13d | 2026-01-13 A | 2027-05-26 | MOD-SWN-PS-1054, MOD-SWN-PS-954 | 90% | 1.3d | 2026-11-02 | 2026-11-17 | -69.35d | 0d |  | Contract Price Original Scope [384043]; Boom Truck Operator [64.94 h]; Electrician [129.87 h] | 384,043.12 | 345,638.81 | PS |
|  | 11 | **Duct Works** |  | 2027-04-12 | 2027-04-20 |  |  |  |  |  |  |  |  |  |  |  |  |
| MOD-SWN-PS-1034 |  | uPVC duct Track 1 – PS3 & PS4 for Sewerage Network Zone 3 | 1d | 2027-04-12 | 2027-04-13 | MOD-SWN-PS-904, A1650 |  |  |  |  | -69.35d | 0d |  | Contract Price Original Scope [2760.41]; Laborer [5 h]; Plumber [10 h] | 2,760.41 |  | PS |
| MOD-SWN-PS-1044 |  | uPVC duct Track 2 – PS3 & PS4 for Sewerage Network Zone 3 | 2d | 2027-04-13 | 2027-04-15 | MOD-SWN-PS-1034, A1650 |  |  |  |  | -69.35d | 0d |  | Contract Price Original Scope [3185.08]; Laborer [10 h]; Plumber [20 h] | 3,185.08 |  | PS |
| MOD-SWN-PS-1054 |  | uPVC duct Track 8 – PS3 & PS4 for Sewerage Network Zone 3 | 4d | 2027-04-15 | 2027-04-20 | MOD-SWN-PS-1044, A1650 |  |  |  |  | -69.35d | 0d |  | Contract Price Original Scope [9274.58]; Laborer [20 h]; Plumber [40 h] | 9,274.58 |  | PS |
|  | 12 | **Grounding Works** |  | 2027-04-20 | 2027-04-24 |  |  |  |  |  |  |  |  |  |  |  |  |
| MOD-SWN-PS-1064 |  | Grounding pit – PS3 & PS4 for Sewerage Network Zone 3 | 1d | 2027-04-20 | 2027-04-21 | MOD-SWN-PS-1054 |  |  |  |  | -69.35d | 0d |  | Contract Price Original Scope [1690.17]; Laborer [5 h]; Electrician [10 h] | 1,690.17 |  | PS |
| MOD-SWN-PS-1074 |  | 600x600 Cable pull pit – PS3 & PS4 for Sewerage Network Zone 3 | 2d | 2027-04-21 | 2027-04-24 | MOD-SWN-PS-1064 |  |  |  |  | -69.35d | 0d |  | Contract Price Original Scope [5913.15]; Laborer [10 h]; Electrician [20 h] | 5,913.15 |  | PS |
|  | 13 | **Landscaping / Interlocking Tiles** |  | 2027-04-24 | 2027-05-23 |  |  |  |  |  |  |  |  |  |  |  |  |
| MOD-SWN-PS-1084 |  | Building perimeter interlock tiles for Sewerage Network Zone 3 | 17d | 2027-04-24 | 2027-05-18 | MOD-SWN-PS-1014, MOD-SWN-PS-1074 |  |  |  |  | -69.35d | 0d |  | Contract Price Original Scope [50952.8]; Mason [154.55 h]; Laborer [154.55 h] | 50,952.81 |  | PS |
| MOD-SWN-PS-1094 |  | Entrance road paving tiles for Sewerage Network Zone 3 | 4d | 2027-05-18 | 2027-05-23 | MOD-SWN-PS-1084 |  |  |  |  | -66.05d | 3.3d |  | Contract Price Original Scope [10721.9]; Mason [40.87 h]; Laborer [40.87 h] | 10,721.87 |  | PS |
|  | 14 | **Pumping Station Internal Drainage Network** |  | 2027-04-24 | 2027-05-02 |  |  |  |  |  |  |  |  |  |  |  |  |
| MOD-SWN-PS-1104 |  | Internal surface drainage channels for Sewerage Network Zone 3 | 7d | 2027-04-24 | 2027-05-02 | MOD-SWN-PS-984, MOD-SWN-PS-994, MOD-SWN-PS-1074 |  |  |  |  | -52.05d | 17.3d |  | Contract Price Original Scope [20279]; Mason [70 h]; Laborer [70 h] | 20,278.98 |  | PS |
|  | 14 | **Rainwater Drainage Network Zone 3** |  | 2026-01-05 | 2026-12-31 |  |  |  |  |  |  |  |  |  |  |  |  |
|  | 1 | **Pipe Laying Works** |  | 2026-01-05 | 2026-12-06 |  |  |  |  |  |  |  |  |  |  |  |  |
|  | 2 | **Supply & Installation of uPVC Pipes (250–300mm dia)** |  | 2026-01-05 | 2026-11-13 |  |  |  |  |  |  |  |  |  |  |  |  |
| MOD-RWN-PL-233 |  | Excavation to required depth UPVC for Rainwater Drainage Network Zone 3 | 21d | 2026-01-05 A | 2026-11-08 | A102500, A102190, A1600 | 95% | 1.05d | 2026-02-13 | 2026-03-05 | -132.11d | 0d | 7-Day Workweek-9 | Contract Price Original Scope [75388.9]; Excavator Operator [0.03 h]; Laborer [0.07 h] | 75,388.93 | 71,619.48 | RW |
| MOD-RWN-PL-243 |  | Lean Concrete / Bedding UPVC for Rainwater Drainage Network Zone 3 | 5d | 2026-01-05 A | 2026-11-08 | MOD-RWN-PL-233 | 95% | 0.25d | 2026-03-06 | 2026-03-10 | -132.11d | 0d | 7-Day Workweek-9 | Contract Price Original Scope [18847.2]; Compactor Operator [80 h]; Laborer [160 h] | 18,847.23 | 17,904.87 | RW |
| MOD-RWN-PL-253 |  | Laying of uPVC pipe UPVC for Rainwater Drainage Network Zone 3 | 19d | 2026-01-05 A | 2026-11-09 | MOD-RWN-PL-243 | 95% | 0.95d | 2026-03-11 | 2026-03-29 | -132.11d | 0d | 7-Day Workweek-9 | Contract Price Original Scope [169625]; Pipefitter [34.55 h]; Laborer [103.64 h] | 169,625.08 | 161,143.83 | RW |
| MOD-RWN-PL-283 |  | Test (Pressure-slope) UPVC for Rainwater Drainage Network Zone 3 | 3d | 2026-02-03 A | 2026-11-09 | MOD-RWN-PL-253 | 80% | 0.6d | 2026-05-29 | 2026-06-01 | -132.11d | 0d | 7-Day Workweek-9 | Contract Price Original Scope [37694.5]; Pipefitter [10 h]; Technician [10 h] | 37,694.46 | 30,155.57 | RW |
| MOD-RWN-PL-263 |  | Coating / Wrapping UPVC for Rainwater Drainage Network Zone 3 | 2d | 2026-02-23 A | 2026-11-10 | MOD-RWN-PL-283 | 80% | 0.4d | 2026-04-25 | 2026-04-27 | -106.31d | 51.25d | 7-Day Workweek-9 | Contract Price Original Scope [37694.5]; Laborer [40 h] | 37,694.46 | 30,155.57 | RW |
| MOD-RWN-PL-293 |  | Backfilling & Warning Tape UPVC for Rainwater Drainage Network Zone 3 | 8d | 2026-06-21 A | 2026-11-13 | MOD-RWN-PL-283, MOD-GEI-PL-001 | 50% | 4d | 2026-07-08 | 2026-07-16 | -109.91d | 47.65d | 7-Day Workweek-9 | Contract Price Original Scope [37694.5]; Compactor Operator [0.07 h]; Laborer [0.13 h] | 37,694.46 | 18,847.23 | RW |

| ID | WBS | Activity | Duration | Start | Finish | Predecessors | Complete | Remaining | Planned start | Planned finish | Total float | Free float | Calendar | Resources | Cost | Actual cost | MOD-2937 |
| --- | --- | --- | --- | --- | --- | --- | --- | --- | --- | --- | --- | --- | --- | --- | --- | --- | --- |
|  | 3 | **Supply & Installation of GRP Pipes (350–800mm dia)** |  | 2026-01-05 | 2026-11-12 |  |  |  |  |  |  |  |  |  |  |  |  |
| MOD-RWN-PL-313 |  | Excavate short trench paths GRP for Rainwater Drainage Network Zone 3 | 21d | 2026-01-05 A | 2026-02-01 A | A102500, A102190 | 100% |  | 2026-02-13 | 2026-03-05 |  |  | 7-Day Workweek-9 | Contract Price Original Scope [34445.9]; Excavator Operator [344.83 h]; Laborer [689.66 h] | 34,445.88 | 34,445.88 | RW |
| MOD-RWN-PL-323 |  | Lean Concrete / bedding material GRP for Rainwater Drainage Network Zone 3 | 8d | 2026-01-05 A | 2026-08-15 A | MOD-RWN-PL-313 | 100% |  | 2026-03-06 | 2026-03-13 |  |  | 7-Day Workweek-9 | Contract Price Original Scope [8611.47]; Laborer [160 h] | 8,611.47 | 8,611.47 | RW |
| MOD-RWN-PL-333 |  | Lay & connect GRP for Rainwater Drainage Network Zone 3 | 21d | 2026-01-05 A | 2026-08-16 A | MOD-RWN-PL-323 | 100% |  | 2026-03-14 | 2026-04-03 |  |  | 7-Day Workweek-9 | Contract Price Original Scope [77503.2]; Crane Operator [150 h]; Laborer [600.01 h] | 77,503.23 | 77,503.23 | RW |
| MOD-RWN-PL-343 |  | Test (Pressure-slope) GRP for Rainwater Drainage Network Zone 3 | 11d | 2026-06-01 A | 2026-11-12 | MOD-RWN-PL-333 | 50% | 5.5d | 2026-09-12 | 2026-09-22 | -108.56d | 0d | 7-Day Workweek-9 | Contract Price Original Scope [17222.9]; Pipefitter [20 h]; Technician [10 h] | 17,222.94 | 8,611.47 | RW |
| MOD-RWN-PL-344 |  | Coating / Wrapping GRP for Rainwater Drainage Network Zone 3 | 21d | 2026-07-01 A | 2026-10-28 A | MOD-RWN-PL-343 | 100% |  | 2026-09-23 | 2026-10-13 |  |  | 7-Day Workweek-9 | Contract Price Original Scope [17222.9]; Laborer [420 h] | 17,222.94 | 17,222.94 | RW |
| MOD-RWN-PL-353 |  | Backfilling & compaction GRP for Rainwater Drainage Network Zone 3 | 10d | 2026-08-01 A | 2026-11-01 A | MOD-RWN-PL-343, MOD-RWN-PL-344, MOD-GEI-PL-001 | 100% |  | 2026-10-14 | 2026-10-23 |  |  | 7-Day Workweek-9 | Contract Price Original Scope [17222.9]; Compactor Operator [0.07 h]; Laborer [0.13 h] | 17,222.94 | 17,222.94 | RW |
|  | 4 | **uPVC Connection Pipes (150mm dia)** |  | 2026-01-05 | 2026-12-06 |  |  |  |  |  |  |  |  |  |  |  |  |
| MOD-RWN-PL-373 |  | Excavate short trench paths UPVC Con. for Rainwater Drainage Network Zone 3 | 5d | 2026-01-05 A | 2026-11-07 | A102500, A102190 | 95% | 0.25d | 2026-02-13 | 2026-02-17 | -130.29d | 0d | 7-Day Workweek-9 | Contract Price Original Scope [8425.71]; Excavator Operator [344.83 h]; Laborer [689.66 h] | 8,425.71 | 8,004.43 | RW |
| MOD-RWN-PL-383 |  | Lean Concrete / bedding material UPVC Con. for Rainwater Drainage Network Zone 3 | 3d | 2026-01-05 A | 2026-11-07 | MOD-RWN-PL-373 | 94% | 0.18d | 2026-02-18 | 2026-02-20 | -130.29d | 1.82d | 7-Day Workweek-9 | Contract Price Original Scope [2106.43]; Laborer [160 h] | 2,106.43 | 1,980.04 | RW |
| MOD-RWN-PL-393 |  | Lay & connect UPVC Con. for Rainwater Drainage Network Zone 3 | 8d | 2026-01-05 A | 2026-11-10 | MOD-RWN-PL-383, MOD-RWN-PL-283 SS | 90% | 0.8d | 2026-03-30 | 2026-04-06 | -132.11d | 0d | 7-Day Workweek-9 | Contract Price Original Scope [18957.9]; Crane Operator [578.56 h]; Laborer [2314.24 h] | 18,957.86 | 17,062.07 | RW |
| MOD-RWN-PL-403 |  | Test (Pressure-slope) UPVC Con. for Rainwater Drainage Network Zone 3 | 3d | 2026-11-10 | 2026-11-13 | MOD-RWN-PL-393 |  |  |  |  | -132.11d | 0d | 7-Day Workweek-9 | Contract Price Original Scope [4212.86]; Pipefitter [20 h]; Technician [10 h] | 4,212.86 |  | RW |
| MOD-RWN-PL-723 |  | Coating / Wrapping UPVC Con. for Rainwater Drainage Network Zone 3 | 21d | 2026-11-13 | 2026-12-04 | MOD-RWN-PL-403 |  |  |  |  | -132.11d | 0d | 7-Day Workweek-9 | Contract Price Original Scope [4212.86]; Laborer [420 h] | 4,212.86 |  | RW |
| MOD-RWN-PL-413 |  | Backfilling & compaction UPVC Con. for Rainwater Drainage Network Zone 3 | 2d | 2026-12-04 | 2026-12-06 | MOD-RWN-PL-403, MOD-RWN-PL-723, MOD-GEI-PL-001 |  |  |  |  | -132.11d | 25.45d | 7-Day Workweek-9 | Contract Price Original Scope [4212.86]; Compactor Operator [0.07 h]; Laborer [0.13 h] | 4,212.86 |  | RW |
|  | 5 | **Precast Concrete Box Culverts** |  | 2026-03-01 | 2026-12-31 |  |  |  |  |  |  |  |  |  |  |  |  |
|  | 1 | **Box Culverts (500x500mm to 3500x800mm)** |  | 2026-03-01 | 2026-12-31 |  |  |  |  |  |  |  |  |  |  |  |  |
| MOD-RWN-PC-234 |  | Survey and layout alignment Box culvert for Rainwater Drainage Network Zone 3 | 3d | 2026-03-01 A | 2026-03-16 A | MOD-RWN-PL-313 SS | 100% |  | 2026-05-16 | 2026-05-18 |  |  |  | Contract Price Original Scope [6625.22]; Laborer [69.93 h]; Surveyor [69.93 h] | 6,625.22 | 6,625.22 | RW |
| MOD-RWN-PC-444 |  | Setting Bench mark & levels Box culvert for Rainwater Drainage Network Zone 3 | 3d | 2026-03-10 A | 2026-03-21 A | MOD-RWN-PC-234 | 100% |  | 2026-05-19 | 2026-05-21 |  |  |  | Contract Price Original Scope [6625.22]; Laborer [750 h]; Surveyor [750 h] | 6,625.22 | 6,625.22 | RW |
| MOD-RWN-PC-454 |  | Cleaning Box culvert for Rainwater Drainage Network Zone 3 | 4d | 2026-03-23 A | 2026-03-30 A | MOD-RWN-PC-444 | 100% |  | 2026-05-23 | 2026-05-26 |  |  |  | Contract Price Original Scope [6625.22]; Laborer [1500 h] | 6,625.22 | 6,625.22 | RW |
| MOD-RWN-PC-464 |  | Testing Box culvert for Rainwater Drainage Network Zone 3 | 2d | 2026-03-30 A | 2026-05-02 A | MOD-RWN-PC-454 | 100% |  | 2026-06-01 | 2026-06-02 |  |  |  | Contract Price Original Scope [6625.22]; Laborer [2850 h] | 6,625.22 | 6,625.22 | RW |
| MOD-RWN-PC-244 |  | Excavation to required depth Box culvert for Rainwater Drainage Network Zone 3 | 5d | 2026-04-06 A | 2026-05-10 A | MOD-RWN-PC-234, MOD-RWN-PC-464, A1600 | 100% |  | 2026-06-03 | 2026-06-08 |  |  |  | Contract Price Original Scope [265009]; Excavator Operator [14.62 h]; Laborer [29.23 h] | 265,008.78 | 265,008.78 | RW |
| MOD-RWN-PC-254 |  | Dewatering and trench shoring Box culvert for Rainwater Drainage Network Zone 3 | 10d | 2026-09-05 A | 2026-11-15 | MOD-RWN-PC-244 | 25% | 7.5d | 2026-09-05 | 2026-09-15 | -134.56d | 0d |  | Contract Price Original Scope [212007]; Pump Operator [303.03 h]; Laborer [303.03 h] | 212,007.02 | 53,001.76 | RW |
| MOD-RWN-PC-264 |  | Bedding preparation (gravel/lean concrete) Box culvert for Rainwater Drainage Network Zone 3 | 4d | 2026-11-15 | 2026-11-19 | MOD-RWN-PC-254 |  |  |  |  | -134.56d | 0d |  | Contract Price Original Scope [79502.6]; Laborer [160 h] | 79,502.63 |  | RW |
| MOD-RWN-PC-274 |  | Installation of box culvert units Box culvert for Rainwater Drainage Network Zone 3 | 10d | 2026-11-19 | 2026-12-01 | MOD-RWN-PC-264 |  |  |  |  | -134.56d | 0d |  | Contract Price Original Scope [318011]; Crane Operator [149.25 h]; Laborer [597.01 h] | 318,010.53 |  | RW |
| MOD-RWN-PC-284 |  | Alignment and joint sealing Box culvert for Rainwater Drainage Network Zone 3 | 4d | 2026-12-01 | 2026-12-06 | MOD-RWN-PC-274 |  |  |  |  | -134.56d | 0d |  | Contract Price Original Scope [37101.2]; Mason [80 h] | 37,101.23 |  | RW |
| MOD-RWN-PC-294 |  | Construct headwalls/wing walls (if needed) Box culvert for Rainwater Drainage Network Zone 3 | 12d | 2026-12-06 | 2026-12-20 | MOD-RWN-PC-284, A102810 |  |  |  |  | -134.56d | 0d |  | Contract Price Original Scope [53001.8]; Mason [444.44 h]; Laborer [444.44 h] | 53,001.76 |  | RW |
| MOD-RWN-PC-304 |  | Backfilling and compaction Box culvert for Rainwater Drainage Network Zone 3 | 7d | 2026-12-20 | 2026-12-28 | MOD-RWN-PC-294, MOD-GEI-PL-001 |  |  |  |  | -134.56d | 0d |  | Contract Price Original Scope [37101.2] | 37,101.23 |  | RW |
| MOD-RWN-PC-314 |  | Surface finishing Box culvert for Rainwater Drainage Network Zone 3 | 3d | 2026-12-28 | 2026-12-31 | MOD-RWN-PC-304 |  |  |  |  | -134.56d | 0d |  | Contract Price Original Scope [31801]; Laborer [60.06 h] | 31,801.05 |  | RW |

| ID | WBS | Activity | Duration | Start | Finish | Predecessors | Complete | Planned start | Planned finish | Total float | Free float | Resources | Cost | Actual cost | MOD-2937 |
| --- | --- | --- | --- | --- | --- | --- | --- | --- | --- | --- | --- | --- | --- | --- | --- |
|  | 2 | **Tube Culverts at Road Intersections** |  | 2026-04-01 | 2026-05-12 |  |  |  |  |  |  |  |  |  |  |
| MOD-RWN-PC-324 |  | Traffic control setup Tube culvert for Rainwater Drainage Network Zone 3 | 2d | 2026-04-01 A | 2026-04-13 A | MOD-RWN-PC-244 | 100% | 2026-06-09 | 2026-06-10 |  |  | Contract Price Original Scope [2237.2]; Flaggers [40 h] | 2,237.2 | 2,237.2 | RW |
| MOD-RWN-PC-344 |  | Pipe bedding and twin pipe alignment Tube culvert for Rainwater Drainage Network Zone 3 | 6d | 2026-04-01 A | 2026-04-07 A | MOD-RWN-PC-334 | 100% | 2026-06-01 | 2026-06-07 |  |  | Contract Price Original Scope [6711.61]; Laborer [119.76 h] | 6,711.61 | 6,711.61 | RW |
| MOD-RWN-PC-354 |  | Pipe laying and jointing Tube culvert for Rainwater Drainage Network Zone 3 | 19d | 2026-04-08 A | 2026-04-15 A | MOD-RWN-PC-344, A102740, A1650 | 100% | 2026-06-08 | 2026-06-29 |  |  | Contract Price Original Scope [59062.2]; Crane Operator [9.88 h]; Laborer [29.63 h] | 59,062.17 | 59,062.17 | RW |
| MOD-RWN-PC-364 |  | Backfilling and road reinstatement Tube culvert for Rainwater Drainage Network Zone 3 | 8d | 2026-04-13 A | 2026-04-18 A | MOD-RWN-PC-354 FS+0.9d, MOD-GEI-PL-001 | 100% | 2026-06-30 | 2026-07-09 |  |  | Contract Price Original Scope [8948.81] | 8,948.81 | 8,948.81 | RW |
| MOD-RWN-PC-334 |  | Trench excavation under road Tube culvert for Rainwater Drainage Network Zone 3 | 11d | 2026-05-02 A | 2026-05-12 A | MOD-RWN-PC-324, A102790 | 100% | 2026-06-11 | 2026-06-23 |  |  | Contract Price Original Scope [12528.3] | 12,528.34 | 12,528.34 | RW |
|  | 3 | **Box Culverts at Road Intersections** |  | 2026-04-01 | 2026-04-30 |  |  |  |  |  |  |  |  |  |  |
| MOD-RWN-PC-384 |  | Deep trench excavation with shoring for Rainwater Drainage Network Zone 3 | 1d | 2026-04-01 A | 2026-04-04 A | MOD-RWN-PC-374 | 100% | 2026-06-01 | 2026-06-01 |  |  | Contract Price Original Scope [1009.9] | 1,009.9 | 1,009.9 | RW |
| MOD-RWN-PC-394 |  | Place bedding material for Rainwater Drainage Network Zone 3 | 1d | 2026-04-05 A | 2026-04-09 A | MOD-RWN-PC-384 | 100% | 2026-06-02 | 2026-06-02 |  |  | Contract Price Original Scope [541.02]; Laborer [400 h] | 541.02 | 541.02 | RW |
| MOD-RWN-PC-404 |  | Install precast box culvert for Rainwater Drainage Network Zone 3 | 4d | 2026-04-09 A | 2026-04-11 A | MOD-RWN-PC-394 | 100% | 2026-06-03 | 2026-06-07 |  |  | Contract Price Original Scope [4688.81]; Crane Operator [8 h]; Laborer [32 h] | 4,688.81 | 4,688.81 | RW |
| MOD-RWN-PC-414 |  | Construct connection chambers (if needed) for Rainwater Drainage Network Zone 3 | 1d | 2026-04-12 A | 2026-04-18 A | MOD-RWN-PC-404, A102810 | 100% | 2026-06-08 | 2026-06-08 |  |  | Contract Price Original Scope [541.02]; Mason [20 h]; Laborer [20 h] | 541.02 | 541.02 | RW |
| MOD-RWN-PC-374 |  | Traffic diversion and barricading for Rainwater Drainage Network Zone 3 | 10d | 2026-04-14 A | 2026-04-22 A | MOD-RWN-PC-324 | 100% | 2026-06-11 | 2026-06-22 |  |  | Contract Price Original Scope [180.34]; Flaggers [298.51 h] | 180.34 | 180.34 | RW |
| MOD-RWN-PC-424 |  | Joint treatment and testing for Rainwater Drainage Network Zone 3 | 12d | 2026-04-15 A | 2026-04-22 A | MOD-RWN-PC-414 | 100% | 2026-06-09 | 2026-06-22 |  |  | Contract Price Original Scope [144.27]; Mason [20 h] | 144.27 | 144.27 | RW |
| MOD-RWN-PC-434 |  | Backfilling and surface reinstatement for Rainwater Drainage Network Zone 3 | 9d | 2026-04-18 A | 2026-04-30 A | MOD-RWN-PC-424, MOD-GEI-PL-001 | 100% | 2026-06-23 | 2026-07-02 |  |  | Contract Price Original Scope [108.2] | 108.2 | 108.2 | RW |
|  | 4 | **Manholes** |  | 2026-11-19 | 2026-12-31 |  |  |  |  |  |  |  |  |  |  |
|  | 1 | **Circular GRP Manholes (1200–1800mm dia)** |  | 2026-11-19 | 2026-12-27 |  |  |  |  |  |  |  |  |  |  |
| MOD-RWN-MH-234 |  | Excavate to full manhole depth Circular Manhole for Rainwater Drainage Network Zone 3 | 7d | 2026-11-19 | 2026-11-28 | MOD-RWN-PC-274 SS |  |  |  | -130.56d | 0d | Contract Price Original Scope [8004.81]; Excavator Operator [14 h]; Laborer [28 h] | 8,004.81 |  | RW |
| MOD-RWN-MH-244 |  | Dewatering and safety barriers Circular Manhole for Rainwater Drainage Network Zone 3 | 6d | 2026-11-28 | 2026-12-05 | MOD-RWN-MH-234 |  |  |  | -130.56d | 0d | Contract Price Original Scope [69756.2]; Carpenter [50 h]; Laborer [50 h] | 69,756.17 |  | RW |
| MOD-RWN-MH-254 |  | Concrete base construction Circular Manhole for Rainwater Drainage Network Zone 3 | 2d | 2026-12-05 | 2026-12-07 | MOD-RWN-MH-244, A103770 |  |  |  | -130.56d | 0d | Contract Price Original Scope [68612.6]; Carpenter [10 h]; Laborer [20 h] | 68,612.63 |  | RW |
| MOD-RWN-MH-264 |  | Install GRP manhole shaft sections Circular Manhole for Rainwater Drainage Network Zone 3 | 7d | 2026-12-07 | 2026-12-15 | MOD-RWN-MH-254, A102600 |  |  |  | -130.56d | 0d | Contract Price Original Scope [57177.2]; Boom Truck Operator [70 h]; Laborer [140 h] | 57,177.19 |  | RW |
| MOD-RWN-MH-274 |  | Place slab and cover frame Circular Manhole for Rainwater Drainage Network Zone 3 | 6d | 2026-12-15 | 2026-12-22 | MOD-RWN-MH-264 |  |  |  | -130.56d | 0d | Contract Price Original Scope [17153.2]; Boom Truck Operator [12 h]; Laborer [24 h] | 17,153.16 |  | RW |
| MOD-RWN-MH-284 |  | Waterproofing Circular Manhole for Rainwater Drainage Network Zone 3 | 2d | 2026-12-22 | 2026-12-24 | MOD-RWN-MH-274 |  |  |  | -130.56d | 0d | Contract Price Original Scope [4574.18]; Carpenter [8 h]; Laborer [8 h] | 4,574.18 |  | RW |
| MOD-RWN-MH-294 |  | Backfilling and compaction Circular Manhole for Rainwater Drainage Network Zone 3 | 2d | 2026-12-24 | 2026-12-27 | MOD-RWN-MH-284, MOD-GEI-PL-001 |  |  |  | -130.56d | 4d | Contract Price Original Scope [3430.63]; Compactor Operator [0.88 h]; Laborer [2.64 h] | 3,430.63 |  | RW |
|  | 3 | **Concrete Manholes for 1500x1500 Box Pipes** |  | 2026-11-19 | 2026-12-27 |  |  |  |  |  |  |  |  |  |  |
| MOD-RWN-MH-374 |  | Excavation Concrete Manhole 1.5x1.5 for Rainwater Drainage Network Zone 3 | 6d | 2026-11-19 | 2026-11-26 | MOD-RWN-PC-274 SS, A1600 |  |  |  | -130.56d | 0d | Contract Price Original Scope [12407.6]; Excavator Operator [1.5 h]; Laborer [3 h] | 12,407.65 |  | RW |
| MOD-RWN-MH-384 |  | Base slab and wall shuttering Concrete Manhole 1.5x1.5 for Rainwater Drainage Network Zone 3 | 4d | 2026-11-26 | 2026-12-01 | MOD-RWN-MH-374 |  |  |  | -130.56d | 0d | Contract Price Original Scope [108124]; Carpenter [17.31 h]; Laborer [8.65 h] | 108,123.81 |  | RW |
| MOD-RWN-MH-394 |  | Wall reinforcement and casting Concrete Manhole 1.5x1.5 for Rainwater Drainage Network Zone 3 | 8d | 2026-12-01 | 2026-12-10 | MOD-RWN-MH-384 |  |  |  | -130.56d | 0d | Contract Price Original Scope [106351]; Carpenter [15.14 h]; Laborer [30.29 h] | 106,351.29 |  | RW |
| MOD-RWN-MH-404 |  | Roof slab with openings Concrete Manhole 1.5x1.5 for Rainwater Drainage Network Zone 3 | 4d | 2026-12-10 | 2026-12-15 | MOD-RWN-MH-394 |  |  |  | -130.56d | 0d | Contract Price Original Scope [88626.1]; Boom Truck Operator [25.96 h]; Laborer [51.92 h] | 88,626.07 |  | RW |
| MOD-RWN-MH-414 |  | Masonry/benching works inside Concrete Manhole 1.5x1.5 for Rainwater Drainage Network Zone 3 | 5d | 2026-12-15 | 2026-12-21 | MOD-RWN-MH-404 |  |  |  | -130.56d | 0d | Contract Price Original Scope [26587.8]; Carpenter [28.12 h]; Laborer [28.12 h] | 26,587.82 |  | RW |
| MOD-RWN-MH-424 |  | Install cover and frame Concrete Manhole 1.5x1.5 for Rainwater Drainage Network Zone 3 | 2d | 2026-12-21 | 2026-12-23 | MOD-RWN-MH-414, A102580 |  |  |  | -130.56d | 0d | Contract Price Original Scope [7090.09]; Boom Truck Operator [8.65 h]; Laborer [17.31 h] | 7,090.09 |  | RW |
| MOD-RWN-MH-434 |  | Backfill in layers Concrete Manhole 1.5x1.5 for Rainwater Drainage Network Zone 3 | 3d | 2026-12-23 | 2026-12-27 | MOD-RWN-MH-424, MOD-GEI-PL-001 |  |  |  | -130.56d | 4d | Contract Price Original Scope [5317.56]; Excavator Operator [6.49 h]; Compactor Operator [6.49 h]; Laborer [12.98 h] | 5,317.56 |  | RW |

| ID | WBS | Activity | Duration | Start | Finish | Predecessors | Complete | Remaining | Planned start | Planned finish | Total float | Free float | Resources | Cost | Actual cost | MOD-2937 |
| --- | --- | --- | --- | --- | --- | --- | --- | --- | --- | --- | --- | --- | --- | --- | --- | --- |
|  | 2 | **Concrete Manholes for 1000x1000 Box Pipes** |  | 2026-11-19 | 2026-12-31 |  |  |  |  |  |  |  |  |  |  |  |
| MOD-RWN-MH-304 |  | Excavation Concrete Manhole 1x1 for Rainwater Drainage Network Zone 3 | 6d | 2026-11-19 | 2026-11-26 | MOD-RWN-PC-274 SS, A1600 |  |  |  |  | -134.56d | 0d | Contract Price Original Scope [6888.88]; Excavator Operator [1.38 h]; Laborer [2.77 h] | 6,888.88 |  | RW |
| MOD-RWN-MH-314 |  | Base slab and wall shuttering Concrete Manhole 1x1 for Rainwater Drainage Network Zone 3 | 4d | 2026-11-26 | 2026-12-01 | MOD-RWN-MH-304 |  |  |  |  | -134.56d | 0d | Contract Price Original Scope [60031.7]; Carpenter [16 h]; Laborer [8 h] | 60,031.65 |  | RW |
| MOD-RWN-MH-324 |  | Wall reinforcement and casting Concrete Manhole 1x1 for Rainwater Drainage Network Zone 3 | 6d | 2026-12-01 | 2026-12-08 | MOD-RWN-MH-314 |  |  |  |  | -134.56d | 0d | Contract Price Original Scope [59047.5]; Carpenter [14 h]; Laborer [28 h] | 59,047.52 |  | RW |
| MOD-RWN-MH-334 |  | Roof slab with openings Concrete Manhole 1x1 for Rainwater Drainage Network Zone 3 | 4d | 2026-12-08 | 2026-12-13 | MOD-RWN-MH-324 |  |  |  |  | -134.56d | 0d | Contract Price Original Scope [49206.3]; Boom Truck Operator [24 h]; Laborer [48 h] | 49,206.27 |  | RW |
| MOD-RWN-MH-344 |  | Masonry/benching works inside Concrete Manhole 1x1 for Rainwater Drainage Network Zone 3 | 7d | 2026-12-13 | 2026-12-21 | MOD-RWN-MH-334 |  |  |  |  | -134.56d | 0d | Contract Price Original Scope [14761.9]; Carpenter [26 h]; Laborer [26 h] | 14,761.88 |  | RW |
| MOD-RWN-MH-354 |  | Install cover and frame Concrete Manhole 1x1 for Rainwater Drainage Network Zone 3 | 4d | 2026-12-21 | 2026-12-26 | MOD-RWN-MH-344, A102580 |  |  |  |  | -134.56d | 0d | Contract Price Original Scope [3936.5]; Boom Truck Operator [8 h]; Laborer [16 h] | 3,936.5 |  | RW |
| MOD-RWN-MH-364 |  | Backfill in layers Concrete Manhole 1x1 for Rainwater Drainage Network Zone 3 | 5d | 2026-12-26 | 2026-12-31 | MOD-RWN-MH-354, MOD-GEI-PL-001 |  |  |  |  | -134.56d | 0d | Contract Price Original Scope [2952.38]; Excavator Operator [6 h]; Compactor Operator [6 h]; Laborer [12 h] | 2,952.38 |  | RW |
|  | 2 | **Chambers and Catch Basins** |  | 2026-01-18 | 2026-11-24 |  |  |  |  |  |  |  |  |  |  |  |
|  | 1 | **Gully Outfalls** |  | 2026-01-18 | 2026-11-21 |  |  |  |  |  |  |  |  |  |  |  |
| MOD-RWN-CC-168 |  | Identify discharge zones Gully Outfall for Rainwater Drainage Network Zone 3 | 4d | 2026-01-18 A | 2026-02-10 A | MOD-RWN-PC-274 SS | 100% |  | 2026-04-30 | 2026-05-05 |  |  | Contract Price Original Scope [4476.64]; Laborer [8 h] | 4,476.64 | 4,476.64 | RW |
| MOD-RWN-CC-178 |  | Excavate outfall channel Gully Outfall for Rainwater Drainage Network Zone 3 | 5d | 2026-02-01 A | 2026-08-31 A | MOD-RWN-CC-168 | 100% |  | 2026-05-05 | 2026-05-11 |  |  | Contract Price Original Scope [25069.2]; Excavator Operator [18 h]; Laborer [36 h] | 25,069.18 | 25,069.18 | RW |
| MOD-RWN-CC-188 |  | Place concrete apron or pipes Gully Outfall for Rainwater Drainage Network Zone 3 | 10d | 2026-03-10 A | 2026-09-08 A | MOD-RWN-CC-178 | 100% |  | 2026-05-24 | 2026-06-09 |  |  | Contract Price Original Scope [118183]; Carpenter [46 h]; Laborer [92 h] | 118,183.26 | 118,183.26 | RW |
| MOD-RWN-CC-198 |  | Provide slope protection (riprap) Gully Outfall for Rainwater Drainage Network Zone 3 | 4d | 2026-03-16 A | 2026-11-19 | MOD-RWN-CC-188 | 96% | 0.16d | 2026-06-09 | 2026-06-14 | -99.72d | 0d | Contract Price Original Scope [13429.9]; Laborer [48 h]; Dump Truck Operator [24 h] | 13,429.92 | 12,892.72 | RW |
| MOD-RWN-CC-208 |  | Compact and shape terrain Gully Outfall for Rainwater Drainage Network Zone 3 | 2d | 2026-06-23 A | 2026-11-21 | MOD-RWN-CC-198 | 50% | 1d | 2026-07-14 | 2026-07-16 | -99.72d | 34.84d | Contract Price Original Scope [17906.5]; Boom Truck Operator [12 h]; Laborer [12 h] | 17,906.55 | 8,953.28 | RW |
|  | 2 | **Rainwater Catch Basins** |  | 2026-02-08 | 2026-11-19 |  |  |  |  |  |  |  |  |  |  |  |
| MOD-RWN-CC-218 |  | Excavate pit area Catch Basin for Rainwater Drainage Network Zone 3 | 6d | 2026-02-08 A | 2026-06-22 A | MOD-RWN-PC-274 SS | 100% |  | 2026-04-30 | 2026-05-07 |  |  | Contract Price Original Scope [6520.06]; Excavator Operator [12 h]; Laborer [24 h] | 6,520.06 | 6,520.06 | RW |
| MOD-RWN-CC-228 |  | Lay bedding and place chamber Catch Basin for Rainwater Drainage Network Zone 3 | 12d | 2026-03-10 A | 2026-06-23 A | MOD-RWN-CC-218 | 100% |  | 2026-05-24 | 2026-06-11 |  |  | Contract Price Original Scope [36512.4]; Boom Truck Operator [24 h]; Laborer [48 h] | 36,512.36 | 36,512.36 | RW |
| MOD-RWN-CC-238 |  | Connect lateral inlet pipe Catch Basin for Rainwater Drainage Network Zone 3 | 4d | 2026-03-18 A | 2026-06-24 A | MOD-RWN-CC-228 | 100% |  | 2026-06-11 | 2026-06-16 |  |  | Contract Price Original Scope [172130]; Carpenter [8 h]; Laborer [8 h] | 172,129.68 | 172,129.68 | RW |
| MOD-RWN-CC-248 |  | Cover with grating Catch Basin for Rainwater Drainage Network Zone 3 | 5d | 2026-03-21 A | 2026-06-25 A | MOD-RWN-CC-238 | 100% |  | 2026-06-16 | 2026-06-22 |  |  | Contract Price Original Scope [19560.2]; Boom Truck Operator [10 h]; Laborer [10 h] | 19,560.19 | 19,560.19 | RW |
| MOD-RWN-CC-258 |  | Backfill and surface finish Catch Basin for Rainwater Drainage Network Zone 3 | 2d | 2026-07-01 A | 2026-11-19 | MOD-RWN-CC-248, MOD-GEI-PL-001 | 95% | 0.1d | 2026-09-21 | 2026-09-22 | -98.66d | 35.9d | Contract Price Original Scope [26080.2]; Excavator Operator [4 h]; Compactor Operator [4 h]; Laborer [8 h] | 26,080.25 | 24,776.24 | RW |
|  | 3 | **Precast Chambers for Absorption Pits** |  | 2026-02-12 | 2026-11-24 |  |  |  |  |  |  |  |  |  |  |  |
| MOD-RWN-CC-268 |  | Excavate pit area Absorption Pit for Rainwater Drainage Network Zone 3 | 7d | 2026-02-12 A | 2026-04-22 A | MOD-RWN-PC-274 SS | 100% |  | 2026-04-30 | 2026-05-09 |  |  | Contract Price Original Scope [16810]; Excavator Operator [8.15 h]; Laborer [16.3 h] | 16,809.98 | 16,809.98 | RW |
| MOD-RWN-CC-278 |  | Install base slab and precast chamber Absorption Pit for Rainwater Drainage Network Zone 3 | 12d | 2026-03-14 A | 2026-04-24 A | MOD-RWN-CC-268 | 100% |  | 2026-05-24 | 2026-06-11 |  |  | Contract Price Original Scope [75644.9]; Boom Truck Operator [42.01 h]; Laborer [84.01 h] | 75,644.93 | 75,644.93 | RW |
| MOD-RWN-CC-288 |  | Connect outlet/inlet piping Absorption Pit for Rainwater Drainage Network Zone 3 | 5d | 2026-03-24 A | 2026-03-26 A | MOD-RWN-CC-278 | 100% |  | 2026-06-11 | 2026-06-17 |  |  | Contract Price Original Scope [33620]; Carpenter [10 h]; Laborer [10 h] | 33,619.97 | 33,619.97 | RW |
| MOD-RWN-CC-298 |  | Waterproofing and protection Absorption Pit for Rainwater Drainage Network Zone 3 | 6d | 2026-03-27 A | 2026-03-31 A | MOD-RWN-CC-288 | 100% |  | 2026-06-17 | 2026-06-24 |  |  | Contract Price Original Scope [25215]; Carpenter [12 h]; Laborer [12 h] | 25,214.98 | 25,214.98 | RW |
| MOD-RWN-CC-308 |  | Backfill and compact Absorption Pit for Rainwater Drainage Network Zone 3 | 5d | 2026-10-28 A | 2026-11-24 | MOD-RWN-CC-298, MOD-GEI-PL-001 | 23% | 3.85d | 2026-11-05 | 2026-11-11 | -102.41d | 32.15d | Contract Price Original Scope [16810]; Excavator Operator [10 h]; Compactor Operator [10 h]; Laborer [20 h] | 16,809.98 | 3,866.3 | RW |

| ID | WBS | Activity | Duration | Start | Finish | Predecessors | Complete | Remaining | Planned start | Planned finish | Total float | Free float | Resources | Cost | Actual cost | MOD-2937 |
| --- | --- | --- | --- | --- | --- | --- | --- | --- | --- | --- | --- | --- | --- | --- | --- | --- |
|  | 3 | **Gully Outfalls to Swales** |  | 2026-02-01 | 2026-12-10 |  |  |  |  |  |  |  |  |  |  |  |
|  | 1 | **Gully Outfalls to Swales** |  | 2026-02-01 | 2026-11-24 |  |  |  |  |  |  |  |  |  |  |  |
| MOD-RWN-GO-101 |  | Identify swale discharge zones Gully Outfall to Swales for Rainwater Drainage Network Zone 3 | 3d | 2026-02-01 A | 2026-02-16 A | MOD-RWN-CC-238 SS | 100% |  | 2026-05-16 | 2026-05-19 |  |  | Contract Price Original Scope [14151.9]; Laborer [10 h]; Surveyor [10 h] | 14,151.86 | 14,151.86 | RW |
| MOD-RWN-GO-111 |  | Excavate outfall channel Gully Outfall to Swales for Rainwater Drainage Network Zone 3 | 4d | 2026-02-09 A | 2026-11-19 | MOD-RWN-GO-101 | 90% | 0.4d | 2026-05-19 | 2026-05-24 | -102.56d | 0d | Contract Price Original Scope [28303.7]; Excavator Operator [22.52 h]; Laborer [45.05 h] | 28,303.72 | 25,473.35 | RW |
| MOD-RWN-GO-121 |  | Place concrete apron or pipes Gully Outfall to Swales for Rainwater Drainage Network Zone 3 | 5d | 2026-03-01 A | 2026-11-21 | MOD-RWN-GO-111 | 80% | 1d | 2026-06-06 | 2026-06-11 | -102.56d | 0d | Contract Price Original Scope [63683.4]; Carpenter [57.56 h]; Laborer [115.13 h] | 63,683.38 | 50,946.7 | RW |
| MOD-RWN-GO-131 |  | Provide slope protection (riprap) Gully Outfall to Swales for Rainwater Drainage Network Zone 3 | 3d | 2026-03-04 A | 2026-11-22 | MOD-RWN-GO-121 | 80% | 0.6d | 2026-06-11 | 2026-06-15 | -102.56d | 0d | Contract Price Original Scope [21227.8]; Laborer [60.06 h]; Dump Truck Operator [30.03 h] | 21,227.79 | 16,982.23 | RW |
| MOD-RWN-GO-141 |  | Compact and shape terrain Gully Outfall to Swales for Rainwater Drainage Network Zone 3 | 2d | 2026-11-22 | 2026-11-24 | MOD-RWN-GO-131 |  |  |  |  | -102.56d | 32d | Contract Price Original Scope [14151.9]; Boom Truck Operator [15.02 h]; Laborer [15.02 h] | 14,151.86 |  | RW |
|  | 2 | **Riprap Works & Protection** |  | 2026-11-19 | 2026-12-10 |  |  |  |  |  |  |  |  |  |  |  |
| MOD-RWN-GO-151 |  | Lay filter fabric/membrane for Rainwater Drainage Network Zone 3 | 3d | 2026-11-19 | 2026-11-23 | MOD-RWN-CC-238 SS |  |  |  |  | -116.56d | 0d | Contract Price Original Scope [3537.97]; Laborer [60.06 h] | 3,537.97 |  | RW |
| MOD-RWN-GO-161 |  | Place riprap/stone layer for Rainwater Drainage Network Zone 3 | 10d | 2026-11-23 | 2026-12-05 | MOD-RWN-GO-151 |  |  |  |  | -116.56d | 0d | Contract Price Original Scope [19458.8]; Laborer [322.58 h]; Dump Truck Operator [161.29 h] | 19,458.81 |  | RW |
| MOD-RWN-GO-171 |  | Compact edges for Rainwater Drainage Network Zone 3 | 3d | 2026-12-05 | 2026-12-08 | MOD-RWN-GO-161 |  |  |  |  | -116.56d | 0d | Contract Price Original Scope [7075.93]; Compactor Operator [59.88 h]; Laborer [59.88 h] | 7,075.93 |  | RW |
| MOD-RWN-GO-181 |  | Ensure hydraulic flow direction for Rainwater Drainage Network Zone 3 | 2d | 2026-12-08 | 2026-12-10 | MOD-RWN-GO-171 |  |  |  |  | -116.56d | 18d | Contract Price Original Scope [5306.95]; Laborer [50 h]; Surveyor [50 h] | 5,306.95 |  | RW |
|  | 6 | **Backfilling & Bedding** |  | 2026-03-17 | 2026-11-30 |  |  |  |  |  |  |  |  |  |  |  |
|  | 1 | **Backfilling Materials (Type A – 201–700mm Pipes)** |  | 2026-03-17 | 2026-11-08 |  |  |  |  |  |  |  |  |  |  |  |
| MOD-RWN-BB-112 |  | Place granular bedding under pipe for Rainwater Drainage Network Zone 3 | 6d | 2026-03-17 A | 2026-11-07 | MOD-RWN-PC-244 SS | 98% | 0.12d | 2026-03-17 | 2026-03-30 | -88.65d | 0d | Contract Price Original Scope [153338]; Excavator Operator [10.91 h]; Laborer [21.82 h] | 153,337.85 | 150,271.1 | RW |
| MOD-RWN-BB-122 |  | Lay and align pipe for Rainwater Drainage Network Zone 3 | 21d | 2026-03-21 A | 2026-11-07 | MOD-RWN-BB-112 | 97% | 0.63d | 2026-05-09 | 2026-06-07 | -88.65d | 0d | Contract Price Original Scope [690020]; Pipefitter [101.82 h]; Laborer [50.91 h] | 690,020.34 | 669,319.73 | RW |
| MOD-RWN-BB-132 |  | Backfill up to spring line for Rainwater Drainage Network Zone 3 | 13d | 2026-03-25 A | 2026-11-08 | MOD-RWN-BB-122, MOD-GEI-PL-001 | 97% | 0.39d | 2026-06-07 | 2026-06-22 | -88.65d | 0d | Contract Price Original Scope [306676]; Compactor Operator [129.87 h]; Laborer [259.74 h] | 306,675.71 | 297,475.44 | RW |
| MOD-RWN-BB-142 |  | Compact layer-wise for Rainwater Drainage Network Zone 3 | 9d | 2026-07-01 A | 2026-11-08 | MOD-RWN-BB-132 | 97% | 0.27d | 2026-08-23 | 2026-09-02 | -88.65d | 0d | Contract Price Original Scope [230007]; Compactor Operator [90.09 h]; Laborer [90.09 h] | 230,006.78 | 223,106.58 | RW |
| MOD-RWN-BB-152 |  | Final fill to subgrade level for Rainwater Drainage Network Zone 3 | 6d | 2026-08-01 A | 2026-11-08 | MOD-RWN-BB-142 | 97% | 0.18d | 2026-09-02 | 2026-09-09 | -88.65d | 45.91d | Contract Price Original Scope [153338]; Excavator Operator [59.88 h]; Laborer [59.88 h] | 153,337.85 | 148,737.72 | RW |
|  | 2 | **Gravel Bedding & Filter Cloth for uPVC Drain Pipes** |  | 2026-03-21 | 2026-11-30 |  |  |  |  |  |  |  |  |  |  |  |
| MOD-RWN-BB-162 |  | Line trench with filter cloth for Rainwater Drainage Network Zone 3 | 10d | 2026-03-21 A | 2026-11-07 | MOD-RWN-PC-244 | 90% | 1d | 2026-05-14 | 2026-05-26 | -107.56d | 0d | Contract Price Original Scope [76481.7]; Laborer [112.73 h] | 76,481.68 | 68,833.51 | RW |
| MOD-RWN-BB-172 |  | Place and compact gravel bedding for Rainwater Drainage Network Zone 3 | 6d | 2026-03-23 A | 2026-11-08 | MOD-RWN-BB-162 | 90% | 0.6d | 2026-05-26 | 2026-06-07 | -107.56d | 0d | Contract Price Original Scope [152963]; Excavator Operator [23.64 h]; Laborer [47.27 h] | 152,963.36 | 137,667.02 | RW |
| MOD-RWN-BB-182 |  | Lay pipe within gravel zone for Rainwater Drainage Network Zone 3 | 21d | 2026-03-29 A | 2026-11-10 | MOD-RWN-BB-172 | 90% | 2.1d | 2026-06-07 | 2026-07-01 | -107.56d | 0d | Contract Price Original Scope [344168]; Pipefitter [281.69 h]; Laborer [140.85 h] | 344,167.55 | 309,750.8 | RW |
| MOD-RWN-BB-192 |  | Wrap filter cloth above pipe for Rainwater Drainage Network Zone 3 | 6d | 2026-07-01 A | 2026-11-16 | MOD-RWN-BB-182 | 20% | 4.8d | 2026-07-23 | 2026-07-30 | -107.56d | 0d | Contract Price Original Scope [114723]; Laborer [666.67 h] | 114,722.52 | 22,944.5 | RW |
| MOD-RWN-BB-202 |  | Final fill and trench restoration for Rainwater Drainage Network Zone 3 | 12d | 2026-11-16 | 2026-11-30 | MOD-RWN-BB-192 |  |  |  |  | -107.56d | 27d | Contract Price Original Scope [76481.7]; Excavator Operator [263.16 h]; Compactor Operator [263.16 h] | 76,481.68 |  | RW |

| ID | WBS | Activity | Duration | Start | Finish | Predecessors | Complete | Remaining | Planned start | Planned finish | Total float | Free float | Calendar | Resources | Cost | Actual cost | MOD-2937 |
| --- | --- | --- | --- | --- | --- | --- | --- | --- | --- | --- | --- | --- | --- | --- | --- | --- | --- |
|  | 7 | **Deep Basin for Groundwater Collection (2.5–3.0m)** |  | 2026-02-02 | 2026-11-30 |  |  |  |  |  |  |  |  |  |  |  |  |
| MOD-RWN-DB-001 |  | Deep excavation and safety shoring for Rainwater Drainage Network Zone 3 | 7d | 2026-02-02 A | 2026-04-01 A | MOD-RWN-BB-002 SS | 100% |  | 2026-04-26 | 2026-05-04 |  |  |  | Contract Price Original Scope [256651]; Equipment Operator [22.19 h] | 256,651.05 | 256,651.05 | RW |
| MOD-RWN-DB-002 |  | Base and side wall construction (cast-in-situ or precast) for Rainwater Drainage Network Zone 3 | 10d | 2026-02-09 A | 2026-11-08 | MOD-RWN-DB-001 | 90% | 1d | 2026-05-04 | 2026-05-16 | -107.71d | 0d |  | Contract Price Original Scope [2566510]; Mason [270 h]; Laborer [539.99 h] | 2,566,510.47 | 2,309,859.43 | RW |
| MOD-RWN-DB-003 |  | Pipe connections for inflow for Rainwater Drainage Network Zone 3 | 12d | 2026-02-16 A | 2026-11-10 | MOD-RWN-DB-002, A102740, A1650 | 85% | 1.8d | 2026-05-16 | 2026-06-03 | -107.71d | 0d |  | Contract Price Original Scope [513302]; Pipefitter [240 h]; Laborer [120 h] | 513,302.09 | 436,306.78 | RW |
| MOD-RWN-DB-004 |  | Cover slab and access shaft for Rainwater Drainage Network Zone 3 | 13d | 2026-02-24 A | 2026-11-14 | MOD-RWN-DB-003 | 80% | 2.6d | 2026-06-03 | 2026-06-18 | -107.71d | 0d |  | Contract Price Original Scope [769953]; Crane Operator [130 h]; Mason [130 h]; Laborer [130 h] | 769,953.14 | 615,962.51 | RW |
| MOD-RWN-DB-005 |  | Waterproofing & sealant for Rainwater Drainage Network Zone 3 | 10d | 2026-07-04 A | 2026-11-22 | MOD-RWN-DB-004 | 40% | 6d | 2026-07-27 | 2026-08-08 | -107.71d | 0d |  | Contract Price Original Scope [898279]; Waterproofing Specialist [150 h]; Laborer [150 h] | 898,278.67 | 359,311.47 | RW |
| MOD-RWN-DB-006 |  | Backfill in controlled layers for Rainwater Drainage Network Zone 3 | 7d | 2026-11-22 | 2026-11-30 | MOD-RWN-DB-005, MOD-GEI-PL-001 |  |  |  |  | -107.71d | 26.85d |  | Contract Price Original Scope [128326]; Excavator Operator [219.99 h]; Compactor Operator [219.99 h] | 128,325.52 |  | RW |
|  | 13 | **Potable Water Network Zone 3** |  | 2025-10-13 | 2027-01-26 |  |  |  |  |  |  |  |  |  |  |  |  |
|  | 13 | **Pipe Installation Works** |  | 2026-01-01 | 2026-11-17 |  |  |  |  |  |  |  |  |  |  |  |  |
| MOD-PWN-PI-313 |  | Trench Excavation for Potable Water Network Zone 3 | 21d | 2026-01-01 A | 2026-01-04 A | A102500, A102190 | 100% |  | 2026-01-10 | 2026-01-30 |  |  | 7-Day Workweek-9 | Contract Price Original Scope [200473]; Excavator Operator [344.83 h]; Laborer [689.66 h] | 200,473.23 | 200,473.23 | PW |
| MOD-PWN-PI-323 |  | Lean Concrete / Pipe Bedding Preparation for Potable Water Network Zone 3 | 4d | 2026-01-13 A | 2026-11-08 | MOD-PWN-PI-313 | 70% | 1.2d | 2026-01-23 | 2026-01-26 | 44.15d | 0d | 7-Day Workweek-9 | Contract Price Original Scope [50118.3]; Laborer [160 h] | 50,118.31 | 35,082.81 | PW |
| MOD-PWN-PI-333 |  | HDPE Pipe Laying (200 mm to 710 mm) for Potable Water Network Zone 3 | 10d | 2026-01-16 A | 2026-11-12 | MOD-PWN-PI-323, A1650 | 60% | 4d | 2026-01-27 | 2026-02-05 | 44.15d | 0d | 7-Day Workweek-9 | Contract Price Original Scope [451065]; Pipefitter [1160.24 h]; Laborer [2320.47 h]; Welder [1160.24 h] | 451,064.76 | 270,638.86 | PW |
| MOD-PWN-PI-343 |  | Test (Pressure-slope) for Potable Water Network Zone 3 | 3d | 2026-02-01 A | 2026-11-13 | MOD-PWN-PI-333 | 55% | 1.35d | 2026-03-25 | 2026-03-28 | 44.15d | 0d | 7-Day Workweek-9 | Contract Price Original Scope [100237]; Pipefitter [10 h]; Technician [10 h] | 100,236.61 | 55,130.14 | PW |
| MOD-PWN-PI-353 |  | Coating / Wrapping for Potable Water Network Zone 3 | 5d | 2026-02-09 A | 2026-11-15 | MOD-PWN-PI-343 | 55% | 2.25d | 2026-02-09 | 2026-02-13 | 44.15d | 0d | 7-Day Workweek-9 | Contract Price Original Scope [100237]; Laborer [100 h] | 100,236.61 | 55,130.14 | PW |
| MOD-PWN-PI-363 |  | Backfilling & Warrning Tape for Potable Water Network Zone 3 | 3d | 2026-02-23 A | 2026-11-17 | MOD-PWN-PI-353, MOD-PWN-PI-353 FF, MOD-GEI-PL-001 | 55% | 1.35d | 2026-04-02 | 2026-04-05 | 44.15d | 31.85d | 7-Day Workweek-9 | Contract Price Original Scope [100237]; Compactor Operator [0.02 h]; Laborer [0.04 h] | 100,236.61 | 55,130.14 | PW |
|  | 2 | **Valve Installation & Chambers** |  | 2026-06-02 | 2026-11-28 |  |  |  |  |  |  |  |  |  |  |  |  |
| MOD-PWN-VC-87 |  | Butterfly Valves (355, 500, 630 mm) for Potable Water Network Zone 3 | 16d | 2026-06-02 A | 2026-11-07 | MOD-PWN-VC-77 SS, A102750 | 98% | 0.32d | 2026-08-22 | 2026-09-08 | 29.33d | 0d |  | Contract Price Original Scope [37956.4]; Crane Operator [32 h]; Pipefitter [64 h]; Laborer [96 h] | 37,956.41 | 37,197.28 | PW |
| MOD-PWN-VC-97 |  | 3-exit (2 x 2.5-inch and 1 x 4-inch) dry vacuum cylinder detachable fire nozzle for Potable Water Network Zone 3 | 17d | 2026-06-15 A | 2026-11-07 | MOD-PWN-VC-87 SS | 99% | 0.17d | 2026-06-20 | 2026-07-08 | 29.33d | 0.07d |  | Contract Price Original Scope [41119.4]; Pipefitter [68 h]; Welder [34 h] | 41,119.44 | 40,708.25 | PW |
| MOD-PWN-VC-107 |  | Valve Chamber Excavation for Potable Water Network Zone 3 | 10d | 2026-06-20 A | 2026-11-07 | MOD-PWN-PI-313 | 99% | 0.1d | 2026-06-27 | 2026-07-07 | 29.26d | 0d |  | Contract Price Original Scope [79075.9]; Excavator Operator [5 h]; Laborer [10 h] | 79,075.86 | 78,285.1 | PW |
| MOD-PWN-VC-117 |  | RC Slab, Walls, or Precast Chambers for Potable Water Network Zone 3 | 7d | 2026-06-21 A | 2026-11-07 | MOD-PWN-VC-107, A102760 | 98% | 0.14d | 2026-07-08 | 2026-07-15 | 29.26d | 0d |  | Contract Price Original Scope [63260.7]; Mason [540.54 h]; Laborer [810.81 h] | 63,260.68 | 61,995.47 | PW |
| MOD-PWN-VC-77 |  | Gate Valves (225–710 mm) for Potable Water Network Zone 3 | 12d | 2026-06-27 A | 2026-11-07 | A102750 | 98% | 0.24d | 2026-06-27 | 2026-07-09 | 29.33d | 0d |  | Contract Price Original Scope [47445.5]; Crane Operator [40 h]; Pipefitter [80 h] | 47,445.51 | 46,496.6 | PW |
| MOD-PWN-VC-127 |  | Fixing Covers, Gratings, Frames for Potable Water Network Zone 3 | 14d | 2026-10-27 A | 2026-11-21 | MOD-PWN-VC-117, MOD-PWN-VC-97 | 15% | 11.9d | 2026-10-31 | 2026-11-16 | 29.26d | 0d |  | Contract Price Original Scope [31630.3]; Laborer [259.74 h]; Welder [129.87 h] | 31,630.34 | 4,744.55 | PW |
| MOD-PWN-VC-137 |  | Tagging & Painting for Potable Water Network Zone 3 | 6d | 2026-11-21 | 2026-11-28 | MOD-PWN-VC-127 |  |  |  |  | 29.26d | 17.91d |  | Contract Price Original Scope [15815.2]; Painter [59.88 h]; Laborer [59.88 h] | 15,815.17 |  | PW |
|  | 3 | **Flow Meter Installation** |  | 2026-08-12 | 2026-12-19 |  |  |  |  |  |  |  |  |  |  |  |  |
| MOD-PWN-FM-55 |  | Chamber Excavation (280 mm, 300 mm, 500 mm, 800 mm) for Potable Water Network Zone 3 | 8d | 2026-08-12 A | 2026-11-07 | MOD-PWN-VC-107 | 90% | 0.8d | 2026-08-25 | 2026-09-02 | 30.5d | 0d |  | Contract Price Original Scope [18460.8]; Excavator Operator [5 h]; Laborer [5 h] | 18,460.85 | 16,614.76 | PW |
| MOD-PWN-FM-65 |  | RC or Precast Chamber Construction for Potable Water Network Zone 3 | 8d | 2026-09-05 A | 2026-11-11 | MOD-PWN-FM-55, A102760 | 60% | 3.2d | 2026-09-12 | 2026-09-21 | 30.5d | 19.15d |  | Contract Price Original Scope [9230.42]; Mason [10 h]; Laborer [10 h] | 9,230.42 | 5,538.25 | PW |
| MOD-PWN-FM-75 |  | Flowmeter Installation & Pipe Integration for Potable Water Network Zone 3 | 10d | 2026-09-08 A | 2026-12-09 | MOD-PWN-FM-65, A102620 | 50% | 5d | 2026-11-05 | 2026-11-17 | 11.35d | 0d |  | Contract Price Original Scope [21537.7]; Pipefitter [72.05 h]; Technician [36.02 h] | 21,537.66 | 10,768.83 | PW |
| MOD-PWN-FM-85 |  | Wiring/Cabling if applicable for Potable Water Network Zone 3 | 8d | 2026-09-15 A | 2026-12-15 | MOD-PWN-FM-75 | 40% | 4.8d | 2026-11-17 | 2026-11-26 | 11.35d | 0d |  | Contract Price Original Scope [9230.42] | 9,230.42 | 3,692.17 | PW |
| MOD-PWN-FM-95 |  | Calibration & Commissioning for Potable Water Network Zone 3 | 3d | 2026-12-15 | 2026-12-19 | MOD-PWN-FM-85 |  |  |  |  | 11.35d | 0d |  | Contract Price Original Scope [3076.81]; Technician [10 h]; Electrician [10 h] | 3,076.81 |  | PW |

| ID | WBS | Activity | Duration | Start | Finish | Predecessors | Complete | Remaining | Planned start | Planned finish | Total float | Free float | Resources | Cost | Actual cost | MOD-2937 |
| --- | --- | --- | --- | --- | --- | --- | --- | --- | --- | --- | --- | --- | --- | --- | --- | --- |
|  | 4 | **Washout & Air Valve Chambers** |  | 2026-08-01 | 2026-11-12 |  |  |  |  |  |  |  |  |  |  |  |
| MOD-PWN-WA-77 |  | Chamber Excavation (280 mm to 710 mm) for Potable Water Network Zone 3 | 6d | 2026-08-01 A | 2026-09-05 A | MOD-PWN-VC-107 SS | 100% |  | 2026-08-22 | 2026-08-27 |  |  | Contract Price Original Scope [38936.2]; Excavator Operator [5 h]; Laborer [5 h] | 38,936.18 | 38,936.18 | PW |
| MOD-PWN-WA-87 |  | RC Blinding + Base + Walls for Potable Water Network Zone 3 | 4d | 2026-08-03 A | 2026-11-07 | MOD-PWN-WA-77 | 96% | 0.16d | 2026-08-29 | 2026-09-01 | 42.25d | 0d | Contract Price Original Scope [29202.1]; Mason [180.18 h]; Laborer [270.27 h] | 29,202.13 | 28,034.05 | PW |
| MOD-PWN-WA-97 |  | Pipe Work for Potable Water Network Zone 3 | 15d | 2026-08-08 A | 2026-11-08 | MOD-PWN-WA-87, A102740, A1650 | 90% | 1.5d | 2026-09-02 | 2026-09-19 | 42.25d | 0d | Contract Price Original Scope [87606.4]; Pipefitter [108 h]; Laborer [54 h] | 87,606.4 | 78,845.76 | PW |
| MOD-PWN-WA-107 |  | Washout (Valve + Outlet) Installation for Potable Water Network Zone 3 | 8d | 2026-08-16 A | 2026-11-09 | MOD-PWN-WA-97, A102750 | 93% | 0.56d | 2026-09-20 | 2026-09-29 | 42.25d | 0d | Contract Price Original Scope [64769.2]; Pipefitter [15.74 h]; Welder [7.87 h] | 64,769.25 | 60,235.41 | PW |
| MOD-PWN-WA-117 |  | Air Valve Rooms (Valve + Outlet) Installation for Potable Water Network Zone 3 | 6d | 2026-08-16 A | 2026-11-09 | MOD-PWN-WA-107, A102780 | 90% | 0.6d | 2026-09-30 | 2026-10-06 | 42.25d | 0d | Contract Price Original Scope [45075.1]; Pipefitter [11.16 h]; Plumber [5.58 h] | 45,075.1 | 40,567.59 | PW |
| MOD-PWN-WA-127 |  | Covers, Ladders & Tags for Potable Water Network Zone 3 | 3d | 2026-09-15 A | 2026-11-10 | MOD-PWN-WA-117 | 89% | 0.33d | 2026-09-15 | 2026-09-19 | 42.25d | 0d | Contract Price Original Scope [19468.1]; Laborer [59.88 h]; Welder [59.88 h] | 19,468.09 | 17,326.6 | PW |
| MOD-PWN-WA-137 |  | Backfilling & Final Finishing for Potable Water Network Zone 3 | 2d | 2026-11-10 | 2026-11-12 | MOD-PWN-WA-127, MOD-GEI-PL-001 |  |  |  |  | 42.25d | 30.9d | Contract Price Original Scope [19468.1] | 19,468.09 |  | PW |
|  | 5 | **Pumping Station (Structure & Civil Works)** |  | 2026-11-07 | 2027-01-21 |  |  |  |  |  |  |  |  |  |  |  |
| MOD-PWN-PS-66 |  | Excavation & Blinding for Potable Water Network Zone 3 | 10d | 2026-11-07 | 2026-11-17 | MOD-PWN-PI-313 SS, A1600 |  |  |  |  | -21.8d | 0d | Contract Price Original Scope [78857.5] | 78,857.51 |  | PW |
| MOD-PWN-PS-76 |  | Reinforced Concrete/GRP Shell Construction for Potable Water Network Zone 3 | 8d | 2026-11-18 | 2026-11-26 | MOD-PWN-PS-66, A102340 |  |  |  |  | -21.8d | 0d | Contract Price Original Scope [78857.5]; Crane Operator [129.87 h]; Mason [389.61 h]; Laborer [519.48 h] | 78,857.51 |  | PW |
| MOD-PWN-PS-86 |  | Access Ladders, Tight Cover, Surface Guttering for Potable Water Network Zone 3 | 5d | 2026-11-28 | 2026-12-02 | MOD-PWN-PS-76 |  |  |  |  | -21.8d | 0d | Contract Price Original Scope [78857.5]; Laborer [259.74 h]; Welder [259.74 h] | 78,857.51 |  | PW |
| MOD-PWN-PS-96 |  | Internal piping & embedded sleeves for Potable Water Network Zone 3 | 13d | 2026-12-03 | 2026-12-17 | MOD-PWN-PS-86 |  |  |  |  | -21.8d | 0d | Contract Price Original Scope [78857.5]; Pipefitter [259.74 h]; Welder [129.87 h] | 78,857.51 |  | PW |
| MOD-PWN-PS-106 |  | Pump Base Pads + Grouting for Potable Water Network Zone 3 | 13d | 2026-12-19 | 2027-01-02 | MOD-PWN-PS-96 |  |  |  |  | -18.6d | 0d | Contract Price Original Scope [78857.5]; Mason [259.74 h]; Laborer [259.74 h] | 78,857.51 |  | PW |
| MOD-PWN-PS-116 |  | Backfilling & External Finishes for Potable Water Network Zone 3 | 17d | 2027-01-03 | 2027-01-21 | MOD-PWN-PS-106, MOD-GEI-PL-001 |  |  |  |  | -18.6d | 0d | Contract Price Original Scope [78857.5] | 78,857.51 |  | PW |
|  | 6 | **Pump Station Building** |  | 2026-12-19 | 2027-01-23 |  |  |  |  |  |  |  |  |  |  |  |
| MOD-PWN-PB-33 |  | Structure Construction (as per architectural drawings) for Potable Water Network Zone 3 | 13d | 2026-12-19 | 2027-01-02 | MOD-PWN-PS-96, A102810 |  |  |  |  | -21.8d | 0d | Contract Price Original Scope [78857.5]; Crane Operator [129.87 h]; Mason [519.48 h]; Laborer [779.22 h] | 78,857.51 |  | PW |
| MOD-PWN-PB-43 |  | 5-ton Hoist Installation for Potable Water Network Zone 3 | 5d | 2027-01-03 | 2027-01-07 | MOD-PWN-PB-33 |  |  |  |  | -21.8d | 0d | Contract Price Original Scope [25922.9]; Crane Operator [50 h]; Mechanic [50 h]; Rigger [100 h] | 25,922.91 |  | PW |
| MOD-PWN-PB-53 |  | Finishes, Doors, Ventilation for Potable Water Network Zone 3 | 13d | 2027-01-09 | 2027-01-23 | MOD-PWN-PB-43 |  |  |  |  | -21.8d | 0d | Contract Price Original Scope [78857.5]; Carpenter [259.74 h]; Laborer [259.74 h] | 78,857.51 |  | PW |
|  | 7 | **Pumping Equipment & Fire Systems** |  | 2026-09-01 | 2027-01-14 |  |  |  |  |  |  |  |  |  |  |  |
| MOD-PWN-PE-88 |  | Main Pumps (250 kW, 295 L/s @ 60 m head) for Potable Water Network Zone 3 | 14d | 2026-09-01 A | 2026-12-30 | MOD-PWN-PS-96, A102640 | 25% | 10.5d | 2026-12-12 | 2026-12-28 | -13.1d | 0d | Contract Price Original Scope [438877]; Electrician [169.49 h]; Plumber [338.98 h] | 438,877.07 | 109,719.27 | PW |
| MOD-PWN-PE-98 |  | Electric Fire Water Pump (64 L/s @ 60 m) for Potable Water Network Zone 3 | 8d | 2026-09-14 A | 2027-01-06 | MOD-PWN-PE-88, A102640 | 25% | 6d | 2026-12-28 | 2027-01-06 | -12.1d | 0d | Contract Price Original Scope [96010.8]; Electrician [322.58 h]; Mechanic [161.29 h] | 96,010.78 | 24,002.7 | PW |
| MOD-PWN-PE-108 |  | Diesel Fire Water Pump (64 L/s @ 60 m) for Potable Water Network Zone 3 | 6d | 2026-09-23 A | 2027-01-04 | MOD-PWN-PE-98 SS, A102640 | 25% | 4.5d | 2026-12-28 | 2027-01-04 | -12.1d | 0d | Contract Price Original Scope [86409.8]; Electrician [149.25 h]; Plumber [298.51 h] | 86,409.76 | 21,602.44 | PW |
| MOD-PWN-PE-118 |  | Electric Jockey Pump for Potable Water Network Zone 3 | 6d | 2026-09-23 A | 2027-01-04 | MOD-PWN-PE-108 SS, A102640 | 25% | 4.5d | 2026-12-28 | 2027-01-04 | -12.1d | 0d | Contract Price Original Scope [48005.4]; Pipefitter [80 h]; Mechanic [80 h] | 48,005.39 | 12,001.35 | PW |
| MOD-PWN-PE-128 |  | Submersible Fire Pumps (2 pcs, 10 L/s @ 10 m) for Potable Water Network Zone 3 | 4d | 2026-09-30 A | 2027-01-03 | MOD-PWN-PE-118 SS, A102640 | 25% | 3d | 2026-12-28 | 2027-01-02 | -12.1d | 0d | Contract Price Original Scope [36483.9]; Electrician [60.06 h]; Plumber [120.12 h] | 36,483.86 | 9,120.97 | PW |
| MOD-PWN-PE-138 |  | Pipework connections within Pump Room for Potable Water Network Zone 3 | 5d | 2027-01-03 | 2027-01-09 | MOD-PWN-PE-128, A102740, A1650 |  |  |  |  | -12.1d | 0d | Contract Price Original Scope [78857.5]; Pipefitter [389.61 h]; Welder [129.87 h] | 78,857.51 |  | PW |
| MOD-PWN-PE-148 |  | MCC & DB panel installation for Potable Water Network Zone 3 | 2d | 2027-01-09 | 2027-01-11 | MOD-PWN-PE-138 |  |  |  |  | -12.1d | 0d | Contract Price Original Scope [78857.5]; Technician [129.87 h]; Electrician [259.74 h] | 78,857.51 |  | PW |
| MOD-PWN-PE-158 |  | Flow meter on 800mm pipe including flow meter chamber and 2-2.5m depth for Potable Water Network Zone 3 | 3d | 2027-01-11 | 2027-01-14 | MOD-PWN-PE-148, A102620, A102760 |  |  |  |  | -12.1d | 10.5d | Contract Price Original Scope [82788.2]; Pipefitter [283.05 h]; Technician [141.52 h] | 82,788.23 |  | PW |

| ID | WBS | Activity | Duration | Start | Finish | Predecessors | Complete | Remaining | Planned start | Planned finish | Total float | Free float | Calendar | Resources | Cost | Actual cost | MOD-2937 |
| --- | --- | --- | --- | --- | --- | --- | --- | --- | --- | --- | --- | --- | --- | --- | --- | --- | --- |
|  | 8 | **Surge Protection** |  | 2027-01-09 | 2027-01-14 |  |  |  |  |  |  |  |  |  |  |  |  |
| MOD-PWN-SP-22 |  | Surge Vessel Installation for Potable Water Network Zone 3 | 4d | 2027-01-09 | 2027-01-13 | MOD-PWN-PE-138 |  |  |  |  | -12.1d | 0d |  | Contract Price Original Scope [22582.1]; Crane Operator [40 h]; Rigger [80 h] | 22,582.13 |  | PW |
| MOD-PWN-SP-32 |  | Pipe Integration as per Surge Analysis for Potable Water Network Zone 3 | 1d | 2027-01-13 | 2027-01-14 | MOD-PWN-SP-22, A102740, A1650 |  |  |  |  | -12.1d | 10.5d |  | Contract Price Original Scope [5645.53]; Pipefitter [20 h]; Welder [10 h] | 5,645.53 |  | PW |
|  | 9 | **Power & Generator System** |  | 2026-12-30 | 2027-01-13 |  |  |  |  |  |  |  |  |  |  |  |  |
| MOD-PWN-PG-44 |  | 500 kVA Standby Generator Installation for Potable Water Network Zone 3 | 4d | 2026-12-30 | 2027-01-04 | A102680, MOD-PWN-PE-88 |  |  |  |  | -11.1d | 0d |  | Contract Price Original Scope [2281215]; Crane Operator [188.89 h]; Electrician [377.78 h]; Plumber [377.78 h] | 2,281,214.96 |  | PW |
| MOD-PWN-PG-54 |  | Canopy, Foundation & Fuel Tank for Potable Water Network Zone 3 | 6d | 2026-12-30 | 2027-01-06 | MOD-PWN-PG-44 SS |  |  |  |  | -11.1d | 0d |  | Contract Price Original Scope [285152]; Laborer [714.29 h]; Welder [476.19 h] | 285,151.87 |  | PW |
| MOD-PWN-PG-64 |  | Electrical Cabling, Circuit Breakers for Potable Water Network Zone 3 | 4d | 2027-01-06 | 2027-01-11 | MOD-PWN-PG-54 |  |  |  |  | -11.1d | 0d |  | Contract Price Original Scope [142576]; Electrician [0.4 h] | 142,575.94 |  | PW |
| MOD-PWN-PG-74 |  | Earthing & Commissioning for Potable Water Network Zone 3 | 2d | 2027-01-11 | 2027-01-13 | MOD-PWN-PG-64 |  |  |  |  | -11.1d | 11.5d |  | Contract Price Original Scope [142576]; Technician [10 h]; Electrician [10 h] | 142,575.94 |  | PW |
|  | 10 | **Chlorination System** |  | 2027-01-03 | 2027-01-18 |  |  |  |  |  |  |  |  |  |  |  |  |
| MOD-PWN-CS-33 |  | Chlorination Device Supply & Installation for Potable Water Network Zone 3 | 7d | 2027-01-03 | 2027-01-10 | MOD-PWN-PB-33, MOD-PWN-PE-88 |  |  |  |  | -15.6d | 0d |  | Contract Price Original Scope [362921]; Pipefitter [606.06 h]; Technician [303.03 h] | 362,920.58 |  | PW |
| MOD-PWN-CS-43 |  | Connections to Main Line or Disinfection Chamber for Potable Water Network Zone 3 | 4d | 2027-01-11 | 2027-01-14 | MOD-PWN-CS-33 |  |  |  |  | -15.6d | 0d |  | Contract Price Original Scope [103692]; Pipefitter [338.98 h]; Welder [169.49 h] | 103,691.59 |  | PW |
| MOD-PWN-CS-53 |  | Control Integration for Potable Water Network Zone 3 | 3d | 2027-01-16 | 2027-01-18 | MOD-PWN-CS-43 |  |  |  |  | -15.6d | 7d |  | Contract Price Original Scope [51845.8]; Technician [90.09 h]; Electrician [90.09 h] | 51,845.8 |  | PW |
|  | 11 | **Water Storage System** |  | 2025-10-13 | 2027-01-26 |  |  |  |  |  |  |  |  |  |  |  |  |
| MOD-PWN-WS-11 |  | Structural tanks for supply or pressure equalization for Potable Water Network Zone 3 | 11d | 2025-10-13 A | 2027-01-26 | A102810, MOD-PWN-PB-53 | 80% | 2.2d | 2026-02-17 | 2026-03-12 | -21.8d | 0.8d |  | Contract Price Original Scope [5159570]; Crane Operator [566.37 h]; Mason [2265.49 h]; Laborer [3398.23 h] | 5,159,570.07 | 4,127,656.05 | PW |
|  | 12 | **Street Lighting** |  | 2025-12-05 | 2027-01-10 |  |  |  |  |  |  |  |  |  |  |  |  |
| MOD-PWN-SL-55 |  | Excavation for Poles for Potable Water Network Zone 3 | 6d | 2025-12-05 A | 2026-04-01 A | MOD-PWN-PS-116 SS, A1600 | 100% |  | 2026-02-28 | 2026-03-11 |  |  |  | Contract Price Original Scope [72038.6] | 72,038.59 | 72,038.59 | PW |
| MOD-PWN-SL-75 |  | Pole & Fixture Installation for Potable Water Network Zone 3 | 16d | 2025-12-13 A | 2027-01-03 | MOD-PWN-SL-65 SS, A102660 | 99% | 0.16d | 2026-03-11 | 2026-04-07 | -7.76d | 0d |  | Contract Price Original Scope [288032]; Crane Operator [434.78 h]; Electrician [869.57 h] | 288,032.34 | 285,152.02 | PW |
| MOD-PWN-SL-65 |  | Conduits, Cabling, Backfilling for Potable Water Network Zone 3 | 12d | 2025-12-15 A | 2027-01-03 | MOD-PWN-SL-55 | 99% | 0.12d | 2026-03-11 | 2026-04-02 | -7.76d | 0d |  | Contract Price Original Scope [72008.1] | 72,008.09 | 71,288 | PW |
| MOD-PWN-SL-85 |  | Connection to Main Supply for Potable Water Network Zone 3 | 6d | 2027-01-03 | 2027-01-10 | MOD-PWN-SL-75 |  |  |  |  | -7.76d | 0d |  | Contract Price Original Scope [24002.7]; Technician [40 h]; Electrician [80 h] | 24,002.7 |  | PW |
| MOD-PWN-SL-95 |  | Testing & Lighting Commissioning for Potable Water Network Zone 3 | 6d | 2027-01-03 | 2027-01-10 | MOD-PWN-SL-85 SS |  |  |  |  | -7.76d | 14.84d |  | Contract Price Original Scope [24002.7]; Technician [10 h]; Electrician [10 h] | 24,002.7 |  | PW |
|  | 6 | **Irrigation Network Zone 3** |  | 2026-03-21 | 2026-12-13 |  |  |  |  |  |  |  |  |  |  |  |  |
|  | 1 | **Excavation, Pipe Laying & Backfilling** |  | 2026-04-01 | 2026-11-13 |  |  |  |  |  |  |  |  |  |  |  |  |
| MOD-IRN-EB-120 |  | Trench Excavation for Irrigation Network Zone 3 | 21d | 2026-04-01 A | 2026-11-09 | A102500, A102190 | 90% | 2.1d | 2026-04-18 | 2026-05-08 | 47.48d | 0d | 7-Day Workweek-9 | Contract Price Original Scope [109257]; Excavator Operator [0.1 h]; Laborer [0.2 h] | 109,256.9 | 98,331.21 | IR |
| MOD-IRN-EB-130 |  | Lean Concrete / Pipe Bedding with Type B Material for Irrigation Network Zone 3 | 9d | 2026-04-04 A | 2026-11-09 | MOD-IRN-EB-120 | 90% | 0.9d | 2026-05-09 | 2026-05-17 | 47.48d | 0d | 7-Day Workweek-9 | Contract Price Original Scope [27314.2]; Laborer [180.18 h] | 27,314.22 | 24,582.8 | IR |
| MOD-IRN-EB-140 |  | HDPE Pipe Laying (125 mm to 630 mm) for Irrigation Network Zone 3 | 21d | 2026-04-07 A | 2026-11-12 | MOD-IRN-EB-130, A1650 | 90% | 2.1d | 2026-05-18 | 2026-06-07 | 47.48d | 0d | 7-Day Workweek-9 | Contract Price Original Scope [245828]; Pipefitter [274.61 h]; Laborer [823.82 h] | 245,828.02 | 221,245.22 | IR |
| MOD-IRN-EB-150 |  | Test (Pressure-slope) for Irrigation Network Zone 3 | 2d | 2026-05-01 A | 2026-11-12 | MOD-IRN-EB-140 | 82% | 0.36d | 2026-09-17 | 2026-09-19 | 47.48d | 0d | 7-Day Workweek-9 | Contract Price Original Scope [54628.4]; Pipefitter [100 h] | 54,628.45 | 44,795.33 | IR |
| MOD-IRN-EB-180 |  | Coating / Wrapping for Irrigation Network Zone 3 | 2d | 2026-06-01 A | 2026-11-12 | MOD-IRN-EB-150 | 82% | 0.36d | 2026-09-19 | 2026-09-21 | 47.48d | 0d | 7-Day Workweek-9 | Contract Price Original Scope [54628.4]; Pipefitter [200 h] | 54,628.45 | 44,795.33 | IR |
| MOD-IRN-EB-190 |  | Backfilling & Warrning Tape for Irrigation Network Zone 3 | 2d | 2026-07-13 A | 2026-11-13 | MOD-IRN-EB-180, MOD-GEI-PL-001 | 50% | 1d | 2026-09-21 | 2026-09-23 | 47.48d | 53.03d | 7-Day Workweek-9 | Contract Price Original Scope [54628.4]; Compactor Operator [20 h]; Laborer [40 h] | 54,628.45 | 27,314.22 | IR |

| ID | WBS | Activity | Duration | Start | Finish | Predecessors | Complete | Remaining | Planned start | Planned finish | Total float | Free float | Resources | Cost | Actual cost | MOD-2937 |
| --- | --- | --- | --- | --- | --- | --- | --- | --- | --- | --- | --- | --- | --- | --- | --- | --- |
|  | 2 | **Valves and Appurtenances** |  | 2026-06-14 | 2026-11-09 |  |  |  |  |  |  |  |  |  |  |  |
| MOD-IRN-VA-55 |  | Supply & Installation of Valves (Gate Valve) for Irrigation Network Zone 3 | 8d | 2026-06-14 A | 2026-09-01 A | A102750 | 100% |  | 2026-06-20 | 2026-06-28 |  |  | Contract Price Original Scope [39421.8]; Crane Operator [100.5 h]; Pipefitter [201 h] | 39,421.79 | 39,421.79 | IR |
| MOD-IRN-VA-65 |  | Supply & Installation of Valves (Butterfly Valve) for Irrigation Network Zone 3 | 8d | 2026-06-20 A | 2026-11-08 | MOD-IRN-VA-55 SS+4d, A102750 | 85% | 1.2d | 2026-06-27 | 2026-07-05 | 44.85d | 0d | Contract Price Original Scope [17817.2]; Crane Operator [5.1 h]; Pipefitter [10.2 h] | 17,817.16 | 15,144.59 | IR |
| MOD-IRN-VA-75 |  | Installation of Flanges, Bolts, Collars, Nuts for Irrigation Network Zone 3 | 3d | 2026-06-21 A | 2026-11-08 | MOD-IRN-VA-65 | 85% | 0.45d | 2026-07-06 | 2026-07-08 | 44.85d | 0d | Contract Price Original Scope [2543.95]; Pipefitter [60.06 h] | 2,543.95 | 2,162.36 | IR |
| MOD-IRN-VA-85 |  | Valve Pressure Testing for Irrigation Network Zone 3 | 2d | 2026-07-06 A | 2026-11-08 | MOD-IRN-VA-75 | 85% | 0.3d | 2026-07-18 | 2026-07-20 | 44.85d | 0d | Contract Price Original Scope [1589.97]; Pipefitter [10 h]; Technician [10 h] | 1,589.97 | 1,351.48 | IR |
| MOD-IRN-VA-95 |  | Support Brackets/Anchor Blocks for Irrigation Network Zone 3 | 2d | 2026-07-07 A | 2026-11-09 | MOD-IRN-VA-85 | 70% | 0.6d | 2026-07-20 | 2026-07-22 | 44.85d | 49.3d | Contract Price Original Scope [2225.96]; Laborer [40 h]; Welder [20 h] | 2,225.96 | 1,558.17 | IR |
|  | 3 | **Valve Rooms** |  | 2026-05-01 | 2026-11-07 |  |  |  |  |  |  |  |  |  |  |  |
| MOD-IRN-VR-77 |  | Excavation for Valve Room Valve Chamber for Irrigation Network Zone 3 | 3d | 2026-05-01 A | 2026-05-31 A | MOD-IRN-VA-65 SS, A1600 | 100% |  | 2026-06-10 | 2026-06-13 |  |  | Contract Price Original Scope [9022.2] | 9,022.2 | 9,022.2 | IR |
| MOD-IRN-VR-87 |  | Blinding Concrete Valve Chamber for Irrigation Network Zone 3 | 2d | 2026-05-12 A | 2026-06-30 A | MOD-IRN-VR-77, A103770 | 100% |  | 2026-06-14 | 2026-06-15 |  |  | Contract Price Original Scope [6014.8]; Laborer [60.06 h] | 6,014.8 | 6,014.8 | IR |
| MOD-IRN-VR-97 |  | RCC Base Slab & Chamber Walls Valve Chamber for Irrigation Network Zone 3 | 3d | 2026-05-19 A | 2026-07-01 A | MOD-IRN-VR-87, A102760 | 100% |  | 2026-06-16 | 2026-06-18 |  |  | Contract Price Original Scope [7217.76]; Mason [100 h]; Laborer [150 h] | 7,217.76 | 7,217.76 | IR |
| MOD-IRN-VR-107 |  | Block Wall Construction (if any) Valve Chamber for Irrigation Network Zone 3 | 5d | 2026-05-24 A | 2026-07-02 A | MOD-IRN-VR-97 | 100% |  | 2026-06-20 | 2026-06-24 |  |  | Contract Price Original Scope [10826.6]; Mason [139.86 h]; Laborer [139.86 h] | 10,826.65 | 10,826.65 | IR |
| MOD-IRN-VR-117 |  | Installation of Valve inside the Room Valve Chamber for Irrigation Network Zone 3 | 2d | 2026-07-01 A | 2026-07-08 A | MOD-IRN-VR-107 | 100% |  | 2026-07-07 | 2026-07-08 |  |  | Contract Price Original Scope [15037]; Pipefitter [4 h] | 15,037.01 | 15,037.01 | IR |
| MOD-IRN-VR-127 |  | Fixing Frame & Cover Valve Chamber for Irrigation Network Zone 3 | 2d | 2026-07-02 A | 2026-07-09 A | MOD-IRN-VR-117 | 100% |  | 2026-07-09 | 2026-07-11 |  |  | Contract Price Original Scope [9022.2]; Laborer [40 h]; Welder [40 h] | 9,022.2 | 9,022.2 | IR |
| MOD-IRN-VR-137 |  | Backfilling and Finishing Valve Chamber for Irrigation Network Zone 3 | 2d | 2026-07-11 A | 2026-11-07 | MOD-IRN-VR-127, MOD-GEI-PL-001 | 85% | 0.3d | 2026-07-11 | 2026-07-12 | 47.1d | 51.55d | Contract Price Original Scope [3007.4] | 3,007.4 | 2,556.29 | IR |
|  | 4 | **Washout Chambers** |  | 2026-04-13 | 2026-11-08 |  |  |  |  |  |  |  |  |  |  |  |
| MOD-IRN-WC-66 |  | Excavation for Chamber Washout Chamber for Irrigation Network Zone 3 | 5d | 2026-04-13 A | 2026-05-30 A | MOD-IRN-VA-55 SS, A1600 | 100% |  | 2026-05-09 | 2026-05-13 |  |  | Contract Price Original Scope [14061.4]; Excavator Operator [5 h]; Laborer [5 h] | 14,061.36 | 14,061.36 | IR |
| MOD-IRN-WC-76 |  | Blinding Concrete Washout Chamber for Irrigation Network Zone 3 | 3d | 2026-04-22 A | 2026-06-17 A | MOD-IRN-WC-66, A103770 | 100% |  | 2026-05-14 | 2026-05-17 |  |  | Contract Price Original Scope [7030.68]; Laborer [60.06 h] | 7,030.68 | 7,030.68 | IR |
| MOD-IRN-WC-86 |  | Construction of RCC Base & Chamber Wall Washout Chamber for Irrigation Network Zone 3 | 8d | 2026-04-30 A | 2026-06-23 A | MOD-IRN-WC-76 | 100% |  | 2026-05-18 | 2026-05-26 |  |  | Contract Price Original Scope [10546]; Mason [10 h]; Laborer [15 h] | 10,546.02 | 10,546.02 | IR |
| MOD-IRN-WC-96 |  | Washout Valve & Pipe Connection Washout Chamber for Irrigation Network Zone 3 | 5d | 2026-06-16 A | 2026-11-07 | MOD-IRN-WC-86, A102750 | 90% | 0.5d | 2026-06-24 | 2026-06-30 | 46.1d | 0d | Contract Price Original Scope [24607.4]; Pipefitter [44.01 h] | 24,607.37 | 22,146.64 | IR |
| MOD-IRN-WC-106 |  | Manhole Frame, Cover & Ladder Fixing Washout Chamber for Irrigation Network Zone 3 | 3d | 2026-06-22 A | 2026-11-07 | MOD-IRN-WC-96 | 90% | 0.3d | 2026-07-02 | 2026-07-06 | 46.1d | 0d | Contract Price Original Scope [10546]; Laborer [50 h]; Welder [50 h] | 10,546.02 | 9,491.42 | IR |
| MOD-IRN-WC-116 |  | Backfilling & Reinstatement Washout Chamber for Irrigation Network Zone 3 | 5d | 2026-07-06 A | 2026-11-08 | MOD-IRN-WC-106, MOD-GEI-PL-001 | 90% | 0.5d | 2026-07-16 | 2026-07-22 | 46.1d | 50.55d | Contract Price Original Scope [3515.34] | 3,515.34 | 3,163.81 | IR |
|  | 5 | **Air Valve Chambers** |  | 2026-03-21 | 2026-11-07 |  |  |  |  |  |  |  |  |  |  |  |
| MOD-IRN-AC-55 |  | Chamber Excavation Air Valve Chamber for Irrigation Network Zone 3 | 6d | 2026-03-21 A | 2026-05-31 A | MOD-IRN-WC-66 SS | 100% |  | 2026-05-25 | 2026-06-06 |  |  | Contract Price Original Scope [9489.67]; Excavator Operator [5 h]; Laborer [5 h] | 9,489.67 | 9,489.67 | IR |
| MOD-IRN-AC-65 |  | Blinding & RCC Base Air Valve Chamber for Irrigation Network Zone 3 | 6d | 2026-03-26 A | 2026-06-23 A | MOD-IRN-AC-55, A103770 | 100% |  | 2026-06-06 | 2026-06-13 |  |  | Contract Price Original Scope [4744.84]; Laborer [80 h] | 4,744.84 | 4,744.84 | IR |
| MOD-IRN-AC-75 |  | Wall Casting / Blockwork Air Valve Chamber for Irrigation Network Zone 3 | 8d | 2026-03-31 A | 2026-06-24 A | MOD-IRN-AC-65 | 100% |  | 2026-06-13 | 2026-06-22 |  |  | Contract Price Original Scope [7117.25]; Mason [119.76 h]; Laborer [119.76 h] | 7,117.25 | 7,117.25 | IR |
| MOD-IRN-AC-85 |  | Air Valve Installation (280–630 mm) Air Valve Chamber for Irrigation Network Zone 3 | 5d | 2026-04-29 A | 2026-07-01 A | MOD-IRN-AC-75, A102780 | 100% |  | 2026-06-20 | 2026-06-25 |  |  | Contract Price Original Scope [18979.3]; Pipefitter [13.71 h] | 18,979.34 | 18,979.34 | IR |
| MOD-IRN-AC-95 |  | Cover Fixing & Finishing Air Valve Chamber for Irrigation Network Zone 3 | 2d | 2026-06-23 A | 2026-11-07 | MOD-IRN-AC-85 | 95% | 0.1d | 2026-06-27 | 2026-06-29 | 47.3d | 51.75d | Contract Price Original Scope [7117.25]; Laborer [59.88 h] | 7,117.25 | 6,761.39 | IR |

| ID | WBS | Activity | Duration | Start | Finish | Predecessors | Complete | Remaining | Planned start | Planned finish | Total float | Free float | Resources | Cost | Actual cost | MOD-2937 |
| --- | --- | --- | --- | --- | --- | --- | --- | --- | --- | --- | --- | --- | --- | --- | --- | --- |
|  | 6 | **Flow Meter Chambers** |  | 2026-04-01 | 2026-12-13 |  |  |  |  |  |  |  |  |  |  |  |
| MOD-IRN-FC-66 |  | Chamber Excavation Flow Meter Chamber for Irrigation Network Zone 3 | 5d | 2026-04-01 A | 2026-06-29 A | MOD-IRN-AC-55 SS | 100% |  | 2026-05-09 | 2026-05-13 |  |  | Contract Price Original Scope [8967.46]; Excavator Operator [5 h]; Laborer [5 h] | 8,967.46 | 8,967.46 | IR |
| MOD-IRN-FC-76 |  | RCC Base & Wall Construction Flow Meter Chamber for Irrigation Network Zone 3 | 4d | 2026-05-27 A | 2026-11-07 | MOD-IRN-FC-66, A102760 | 80% | 0.8d | 2026-06-08 | 2026-06-13 | 38d | 22.45d | Contract Price Original Scope [4483.73]; Mason [100 h]; Laborer [150 h] | 4,483.73 | 3,586.99 | IR |
| MOD-IRN-FC-86 |  | Flow Meter Installation (280, 300, 500 mm) Flow Meter Chamber for Irrigation Network Zone 3 | 6d | 2026-07-01 A | 2026-12-05 | MOD-IRN-FC-76, A102620 | 80% | 1.2d | 2026-08-18 | 2026-08-25 | 15.55d | 0d | Contract Price Original Scope [15693.1]; Pipefitter [52.02 h]; Technician [26.01 h] | 15,693.06 | 12,554.45 | IR |
| MOD-IRN-FC-96 |  | Integration with Pipework Flow Meter Chamber for Irrigation Network Zone 3 | 5d | 2026-07-02 A | 2026-12-06 | MOD-IRN-FC-86 | 80% | 1d | 2026-08-23 | 2026-08-29 | 15.55d | 0d | Contract Price Original Scope [6725.6]; Pipefitter [119.76 h] | 6,725.6 | 5,380.48 | IR |
| MOD-IRN-FC-106 |  | Testing & Calibration Flow Meter Chamber for Irrigation Network Zone 3 | 6d | 2026-07-21 A | 2026-12-08 | MOD-IRN-FC-96 | 60% | 2.4d | 2026-11-10 | 2026-11-17 | 15.55d | 0d | Contract Price Original Scope [6725.6]; Technician [10 h] | 6,725.6 | 4,035.36 | IR |
| MOD-IRN-FC-116 |  | Cover and Access Arrangement Flow Meter Chamber for Irrigation Network Zone 3 | 4d | 2026-12-08 | 2026-12-13 | MOD-IRN-FC-106 |  |  |  |  | 15.55d | 0d | Contract Price Original Scope [2241.87]; Laborer [20 h] | 2,241.87 |  | IR |
|  | 7 | **Rainwater Collection Ponds Zone 3** |  | 2025-09-15 | 2027-03-20 |  |  |  |  |  |  |  |  |  |  |  |
|  | 10 | **Excavation for Rainwater Drainage Pond** |  | 2025-10-01 | 2027-01-09 |  |  |  |  |  |  |  |  |  |  |  |
|  | 11 | **Deep excavation, backfill, disposal for pond formation** |  | 2025-10-01 | 2027-01-09 |  |  |  |  |  |  |  |  |  |  |  |
| MOD-RCP-ER-78 |  | Mark and fence pond boundary for Rainwater Collection Ponds Zone 3 | 3d | 2025-10-01 A | 2025-10-04 A | MIL-0006, MOD-GEI-SF-001 | 100% |  | 2026-04-14 | 2026-04-18 |  |  | Contract Price Original Scope [13812.5]; Laborer [35.04 h]; Surveyor [17.52 h] | 13,812.46 | 13,812.46 | PO |
| MOD-RCP-ER-88 |  | Excavate in layers to final depth for Rainwater Collection Ponds Zone 3 | 12d | 2025-10-04 A | 2027-01-02 | MOD-RCP-ER-78 | 90% | 1.2d | 2026-04-18 | 2026-05-02 | 91.8d | 0d | Contract Price Original Scope [120366]; Excavator Operator [127.27 h]; Laborer [190.91 h] | 120,365.71 | 108,329.14 | PO |
| MOD-RCP-ER-98 |  | Dewater during excavation for Rainwater Collection Ponds Zone 3 | 5d | 2026-03-01 A | 2027-01-03 | MOD-RCP-ER-88 | 80% | 1d | 2026-08-09 | 2026-08-15 | 91.8d | 0d | Contract Price Original Scope [118393] | 118,392.51 | 94,714 | PO |
| MOD-RCP-ER-108 |  | Place warning tapes for Rainwater Collection Ponds Zone 3 | 6d | 2026-07-01 A | 2027-01-04 | MOD-RCP-ER-98 | 80% | 1.2d | 2026-11-11 | 2026-11-18 | 91.8d | 0d | Contract Price Original Scope [29598.1]; Laborer [69.86 h] | 29,598.13 | 23,678.5 | PO |
| MOD-RCP-ER-118 |  | Dispose of rock/materials to approved dump area for Rainwater Collection Ponds Zone 3 | 7d | 2026-08-10 A | 2027-01-06 | MOD-RCP-ER-108 | 80% | 1.4d | 2026-11-18 | 2026-11-26 | 91.8d | 0d | Contract Price Original Scope [98660.4]; Laborer [74.24 h]; Dump Truck Operator [37.12 h] | 98,660.42 | 78,928.34 | PO |
| MOD-RCP-ER-128 |  | Backfill selected areas as per design for Rainwater Collection Ponds Zone 3 | 2d | 2026-09-01 A | 2027-01-06 | MOD-RCP-ER-118, MOD-GEI-PL-001 | 80% | 0.4d | 2026-11-16 | 2026-11-17 | 91.8d | 0d | Contract Price Original Scope [7892.83]; Excavator Operator [11.67 h]; Laborer [23.33 h] | 7,892.83 | 6,314.27 | PO |
| MOD-RCP-ER-138 |  | Final trimming and profiling for Rainwater Collection Ponds Zone 3 | 2d | 2027-01-06 | 2027-01-09 | MOD-RCP-ER-128 |  |  |  |  | 91.8d | 222.8d | Contract Price Original Scope [5919.63]; Grader Operator [11.67 h]; Laborer [11.67 h] | 5,919.63 |  | PO |
|  | 1 | **General Site Preparation** |  | 2025-09-15 | 2027-01-05 |  |  |  |  |  |  |  |  |  |  |  |
| MOD-RCP-GS-123 |  | Site demarcation for Rainwater Collection Ponds Zone 3 | 15d | 2025-09-15 A | 2025-10-20 A | MOD-RCP-ER-78 | 100% |  | 2026-04-23 | 2026-05-11 |  |  | Contract Price Original Scope [96859.6]; Laborer [72.98 h]; Surveyor [72.98 h] | 96,859.64 | 96,859.64 | PO |
| MOD-RCP-GS-133 |  | Clearing and grubbing for Rainwater Collection Ponds Zone 3 | 20d | 2025-09-15 A | 2025-10-20 A | MOD-RCP-GS-123 | 100% |  | 2026-05-11 | 2026-06-08 |  |  | Contract Price Original Scope [871737]; Excavator Operator [364.92 h]; Laborer [729.85 h] | 871,736.8 | 871,736.8 | PO |
| MOD-RCP-GS-183 |  | Earthwork excavation (other than topsoil or rock) - Zone 3 (3 Ponds) for Rainwater Collection Ponds Zone 3 | 21d | 2025-10-12 A | 2027-01-03 | MOD-RCP-GS-133 | 90% | 2.1d | 2026-05-14 | 2026-06-13 | 32.35d | 0d | Contract Price Original Scope [7689674]; Excavator Operator [3219.03 h]; Laborer [3219.03 h] | 7,689,673.88 | 6,920,706.49 | PO |
| MOD-RCP-GS-193 |  | Transport and disposal to approved locations - Zone 3 (3 Ponds) for Rainwater Collection Ponds Zone 3 | 21d | 2025-12-06 A | 2027-01-05 | MOD-RCP-GS-183 | 90% | 2.1d | 2026-04-23 | 2026-05-18 | 47.6d | 0d | Contract Price Original Scope [6476303]; Laborer [5630.74 h]; Dump Truck Operator [33784.4 h] | 6,476,302.56 | 5,828,672.3 | PO |
|  | 2 | **Backfilling Works** |  | 2025-11-18 | 2027-01-18 |  |  |  |  |  |  |  |  |  |  |  |
| MOD-RCP-BW-75 |  | Compact each layer to required density for Rainwater Collection Ponds Zone 3 | 20d | 2025-11-18 A | 2027-01-12 | MOD-RCP-BW-65, MOD-RCP-GS-183 | 90% | 2d | 2026-08-11 | 2026-09-03 | 83.8d | 0d | Contract Price Original Scope [211133]; Compactor Operator [116.67 h]; Laborer [116.67 h] | 211,133.36 | 190,020.02 | PO |
| MOD-RCP-BW-65 |  | Place in layers not exceeding 300mm for Rainwater Collection Ponds Zone 3 | 21d | 2025-11-29 A | 2027-01-10 | MOD-RCP-BW-55, MOD-RCP-GS-183 | 90% | 2.1d | 2026-07-01 | 2026-07-26 | 83.8d | 0d | Contract Price Original Scope [295587]; Paver Operator [157.66 h]; Laborer [315.32 h] | 295,586.71 | 266,028.03 | PO |
| MOD-RCP-BW-55 |  | Select material from excavation or import approved material for Rainwater Collection Ponds Zone 3 | 15d | 2025-12-11 A | 2027-01-07 | MOD-RCP-GS-183, MOD-RCP-GS-193 | 90% | 1.5d | 2026-07-11 | 2026-07-28 | 47.6d | 0d | Contract Price Original Scope [168907] | 168,906.69 | 152,016.02 | PO |
| MOD-RCP-BW-85 |  | Conduct field density tests for Rainwater Collection Ponds Zone 3 | 4d | 2026-08-01 A | 2027-01-12 | MOD-RCP-BW-75, MOD-RCP-GS-183 | 90% | 0.4d | 2026-12-15 | 2026-12-20 | 83.8d | 0d | Contract Price Original Scope [126680]; Laborer [23.33 h]; Technician [23.33 h] | 126,680.02 | 114,012.01 | PO |
| MOD-RCP-BW-95 |  | Final leveling and approval for Rainwater Collection Ponds Zone 3 | 5d | 2027-01-12 | 2027-01-18 | MOD-RCP-BW-85, MOD-RCP-GS-183 |  |  |  |  | 83.8d | 214.8d | Contract Price Original Scope [42226.7]; Grader Operator [29.17 h]; Surveyor [29.17 h] | 42,226.67 |  | PO |

| ID | WBS | Activity | Duration | Start | Finish | Predecessors | Complete | Remaining | Planned start | Planned finish | Total float | Free float | Resources | Cost | Actual cost | MOD-2937 |
| --- | --- | --- | --- | --- | --- | --- | --- | --- | --- | --- | --- | --- | --- | --- | --- | --- |
|  | 12 | **Geotextile & Bedding** |  | 2026-01-12 | 2027-03-20 |  |  |  |  |  |  |  |  |  |  |  |
|  | 13 | **Installation of geotextile lining and coarse sand bedding** |  | 2026-01-12 | 2027-03-20 |  |  |  |  |  |  |  |  |  |  |  |
| MOD-RCP-GB-45 |  | Trim subgrade to required level for Rainwater Collection Ponds Zone 3 | 7d | 2026-01-12 A | 2027-01-09 | MOD-RCP-BW-55, MOD-RCP-GS-183 | 80% | 1.4d | 2026-07-02 | 2026-07-11 | 47.6d | 0d | Contract Price Original Scope [143294]; Grader Operator [40.79 h]; Laborer [40.79 h] | 143,293.99 | 114,635.2 | PO |
| MOD-RCP-GB-55 |  | Lay HDPE geotextile membrane over compacted soil for Rainwater Collection Ponds Zone 3 | 21d | 2026-01-29 A | 2027-01-16 | MOD-RCP-GB-45, MOD-RCP-GS-183 | 70% | 6.3d | 2026-07-11 | 2026-08-04 | 47.6d | 0d | Contract Price Original Scope [501529]; Laborer [381.82 h] | 501,528.98 | 351,070.29 | PO |
| MOD-RCP-GB-65 |  | Place 500mm thick coarse sand bedding for Rainwater Collection Ponds Zone 3 | 21d | 2027-01-17 | 2027-02-11 | MOD-RCP-GB-55, MOD-RCP-GS-183 |  |  |  |  | 47.6d | 0d | Contract Price Original Scope [429882]; Paver Operator [121.53 h]; Laborer [243.06 h] | 429,881.98 |  | PO |
| MOD-RCP-GB-75 |  | Compact and level bedding for Rainwater Collection Ponds Zone 3 | 17d | 2027-02-13 | 2027-03-20 | MOD-RCP-GB-65, MOD-RCP-GS-183 |  |  |  |  | 47.6d | 0d | Contract Price Original Scope [358235]; Compactor Operator [98.87 h]; Laborer [98.87 h] | 358,234.99 |  | PO |
|  | 3 | **Concrete Structures** |  | 2026-04-07 | 2026-11-26 |  |  |  |  |  |  |  |  |  |  |  |
|  | 4 | **Construction of pond slab, walls, vertical structures** |  | 2026-04-07 | 2026-11-26 |  |  |  |  |  |  |  |  |  |  |  |
| MOD-RCP-CS-100 |  | Clean the subgrade for Rainwater Collection Ponds Zone 3 | 2d | 2026-04-07 A | 2026-04-11 A | MOD-RCP-GB-55 SS, MOD-RCP-GS-183, MOD-RCP-GB-75 | 100% |  | 2026-10-05 | 2026-10-07 |  |  | Contract Price Original Scope [3718.8]; Laborer [23.33 h] | 3,718.8 | 3,718.8 | PO |
| MOD-RCP-CS-110 |  | Lay 100mm thick blinding (C15) for Rainwater Collection Ponds Zone 3 | 3d | 2026-04-12 A | 2026-04-16 A | MOD-RCP-CS-100, MOD-RCP-GS-183 | 100% |  | 2026-10-07 | 2026-10-11 |  |  | Contract Price Original Scope [33469.2]; Concrete Finisher [17.5 h]; Laborer [52.5 h] | 33,469.19 | 33,469.19 | PO |
| MOD-RCP-CS-120 |  | Install formwork and reinforcement for Rainwater Collection Ponds Zone 3 | 8d | 2026-04-13 A | 2026-04-20 A | MOD-RCP-CS-110, MOD-RCP-GS-183 | 100% |  | 2026-10-11 | 2026-10-20 |  |  | Contract Price Original Scope [114459]; Carpenter [93.34 h]; Steel Fixer [93.34 h] | 114,458.63 | 114,458.63 | PO |
| MOD-RCP-CS-130 |  | Cast base slab with C20 concrete (300–500mm thick) for Rainwater Collection Ponds Zone 3 | 4d | 2026-04-18 A | 2026-04-25 A | MOD-RCP-CS-120, MOD-RCP-GS-183 | 100% |  | 2026-10-20 | 2026-10-25 |  |  | Contract Price Original Scope [203556]; Concrete Finisher [42.42 h]; Laborer [84.85 h] | 203,555.59 | 203,555.59 | PO |
| MOD-RCP-CS-140 |  | Construct sub-walls (150–300mm thick) for Rainwater Collection Ponds Zone 3 | 7d | 2026-04-22 A | 2026-04-30 A | MOD-RCP-CS-130, MOD-RCP-GS-183 | 100% |  | 2026-10-25 | 2026-11-02 |  |  | Contract Price Original Scope [56437.8]; Mason [122.5 h]; Laborer [81.67 h] | 56,437.79 | 56,437.79 | PO |
| MOD-RCP-CS-150 |  | Construct vertical structures (0.2–1.22m wide) for Rainwater Collection Ponds Zone 3 | 9d | 2026-05-02 A | 2026-05-12 A | MOD-RCP-CS-140, MOD-RCP-GS-183 | 100% |  | 2026-11-02 | 2026-11-12 |  |  | Contract Price Original Scope [562717]; Crane Operator [47.73 h]; Mason [190.91 h]; Laborer [143.18 h] | 562,716.56 | 562,716.56 | PO |
| MOD-RCP-CS-160 |  | Remove formwork after curing for Rainwater Collection Ponds Zone 3 | 3d | 2026-05-05 A | 2026-05-14 A | MOD-RCP-CS-150, MOD-RCP-GS-183 | 100% |  | 2026-11-12 | 2026-11-16 |  |  | Contract Price Original Scope [29616.7]; Carpenter [17.52 h]; Laborer [35.04 h] | 29,616.66 | 29,616.66 | PO |
| MOD-RCP-CS-170 |  | Apply power floating finish for Rainwater Collection Ponds Zone 3 | 2d | 2026-05-12 A | 2026-05-18 A | MOD-RCP-CS-160, MOD-RCP-GS-183 | 100% |  | 2026-11-16 | 2026-11-18 |  |  | Contract Price Original Scope [5102.83]; Concrete Finisher [23.33 h] | 5,102.83 | 5,102.83 | PO |
| MOD-RCP-CS-180 |  | Apply waterproofing, bitumen, screed, perimeter lining for Rainwater Collection Ponds Zone 3 | 7d | 2026-05-16 A | 2026-11-26 A | MOD-RCP-CS-170, MOD-RCP-GS-183 | 100% |  | 2026-11-18 | 2026-11-26 |  |  | Contract Price Original Scope [22907.5]; Waterproofing Specialist [111.36 h]; Laborer [74.24 h] | 22,907.54 | 22,907.54 | PO |
|  | 5 | **Energy Dissipation & Siphon Structures** |  | 2025-11-18 | 2026-12-01 |  |  |  |  |  |  |  |  |  |  |  |
|  | 6 | **Siphon pipes, energy dissipators, and associated civil works** |  | 2025-11-18 | 2026-12-01 |  |  |  |  |  |  |  |  |  |  |  |
| MOD-RCP-ED-78 |  | Excavate for low-level areas for Rainwater Collection Ponds Zone 3 | 3d | 2025-11-18 A | 2026-12-01 A | MOD-RCP-CS-150, MOD-RCP-GS-183 | 100% |  | 2026-11-01 | 2026-11-04 |  |  | Contract Price Original Scope [8329.52]; Excavator Operator [17.5 h]; Laborer [35 h] | 8,329.52 | 8,329.52 | PO |
| MOD-RCP-ED-88 |  | Lay granular bedding and compact for Rainwater Collection Ponds Zone 3 | 11d | 2025-11-22 A | 2025-11-29 A | MOD-RCP-ED-78, MOD-RCP-GS-183 | 100% |  | 2026-11-04 | 2026-11-17 |  |  | Contract Price Original Scope [72585.8]; Compactor Operator [64.16 h]; Laborer [128.32 h] | 72,585.8 | 72,585.8 | PO |
| MOD-RCP-ED-98 |  | Install siphon pipe with DI 90° bends for Rainwater Collection Ponds Zone 3 | 10d | 2025-11-25 A | 2025-11-30 A | MOD-RCP-ED-88, MOD-RCP-GS-183 | 100% |  | 2026-11-17 | 2026-11-29 |  |  | Contract Price Original Scope [71395.9]; Crane Operator [58.33 h]; Pipefitter [116.67 h] | 71,395.87 | 71,395.87 | PO |
| MOD-RCP-ED-108 |  | Place coarse gravel tamping for Rainwater Collection Ponds Zone 3 | 8d | 2025-12-01 A | 2025-12-09 A | MOD-RCP-ED-98, MOD-RCP-GS-183 | 100% |  | 2026-11-04 | 2026-11-14 |  |  | Contract Price Original Scope [59496.6]; Laborer [93.33 h] | 59,496.56 | 59,496.56 | PO |
| MOD-RCP-ED-118 |  | Construct reinforced concrete side walls for Rainwater Collection Ponds Zone 3 | 6d | 2026-01-06 A | 2026-01-11 A | MOD-RCP-ED-108, MOD-RCP-GS-183 | 100% |  | 2026-11-14 | 2026-11-21 |  |  | Contract Price Original Scope [17849]; Mason [105 h]; Laborer [70 h] | 17,848.97 | 17,848.97 | PO |
| MOD-RCP-ED-128 |  | Brickwork and finishing for Rainwater Collection Ponds Zone 3 | 2d | 2026-01-12 A | 2026-01-15 A | MOD-RCP-ED-118, MOD-RCP-GS-183 | 100% |  | 2026-11-21 | 2026-11-23 |  |  | Contract Price Original Scope [4759.72]; Mason [23.33 h]; Laborer [11.67 h] | 4,759.72 | 4,759.72 | PO |
| MOD-RCP-ED-138 |  | Install energy dissipators (gabion baffles, riprap) for Rainwater Collection Ponds Zone 3 | 2d | 2026-01-14 A | 2026-01-20 A | MOD-RCP-ED-128, MOD-RCP-GS-183 | 100% |  | 2026-11-23 | 2026-11-25 |  |  | Contract Price Original Scope [3569.79]; Crane Operator [11.67 h]; Laborer [35 h] | 3,569.79 | 3,569.79 | PO |

| ID | WBS | Activity | Duration | Start | Finish | Predecessors | Complete | Remaining | Planned start | Planned finish | Total float | Free float | Calendar | Resources | Cost | Actual cost | MOD-2937 |
| --- | --- | --- | --- | --- | --- | --- | --- | --- | --- | --- | --- | --- | --- | --- | --- | --- | --- |
|  | 8 | **Road Crossing Zone 3** |  | 2026-04-01 | 2027-06-30 |  |  |  |  |  |  |  |  |  |  |  |  |
|  | 14 | **uPVC Road Crossing Pipes** |  | 2026-04-01 | 2027-02-24 |  |  |  |  |  |  |  |  |  |  |  |  |
|  | 15 | **Installation of uPVC pipes of various diameters crossing roadways** |  | 2026-04-01 | 2027-02-24 |  |  |  |  |  |  |  |  |  |  |  |  |
| MOD-ROC-PV-002 |  | Demarcation and traffic diversion (if required) for Road Crossing Zone 3 | 5d | 2026-04-01 A | 2026-05-31 A | MOD-GEI-SF-001, MOD-RCP-ER-78 | 100% |  | 2026-08-05 | 2026-08-11 |  |  |  | Contract Price Original Scope [30071.1]; Laborer [21.82 h]; Surveyor [10.91 h] | 30,071.12 | 30,071.12 | RD |
| MOD-ROC-PV-005 |  | Preparation of trench base with compacted bedding for Road Crossing Zone 3 | 10d | 2026-04-01 A | 2027-01-10 | MOD-ROC-PV-004 | 60% | 4d | 2026-08-16 | 2026-08-26 | -134.66d | 0d |  | Contract Price Original Scope [60142.2]; Compactor Operator [27.27 h]; Laborer [54.55 h] | 60,142.24 | 36,085.34 | RD |
| MOD-ROC-PV-006 |  | Laying of uPVC pipe (300mm, 315mm, 400mm, 600mm dia) for Road Crossing Zone 3 | 10d | 2026-05-01 A | 2027-01-16 | MOD-ROC-PV-005 | 50% | 5d | 2026-08-27 | 2026-09-07 | -134.66d | 0d |  | Contract Price Original Scope [240569]; Crane Operator [49.09 h]; Plumber [98.18 h] | 240,568.95 | 120,284.48 | RD |
| MOD-ROC-PV-003 |  | Saw cutting and removal of asphalt (if applicable) for Road Crossing Zone 3 | 5d | 2026-05-18 A | 2026-06-01 A | MOD-ROC-PV-002 | 100% |  | 2026-08-05 | 2026-08-10 |  |  |  | Contract Price Original Scope [60142.2]; Road Cutter Operator [164.28 h]; Laborer [328.56 h] | 60,142.24 | 60,142.24 | RD |
| MOD-ROC-PV-004 |  | Excavation across road width to required depth for Road Crossing Zone 3 | 10d | 2026-06-09 A | 2027-01-05 | MOD-ROC-PV-003, A1600 | 60% | 4d | 2026-08-11 | 2026-08-22 | -134.66d | 0d |  | Contract Price Original Scope [90213.4]; Excavator Operator [164.28 h]; Laborer [328.56 h] | 90,213.36 | 54,128.01 | RD |
| MOD-ROC-PV-007 |  | Placement of supports and protection around the pipe for Road Crossing Zone 3 | 5d | 2027-01-16 | 2027-01-21 | MOD-ROC-PV-006 |  |  |  |  | -134.66d | 0d |  | Contract Price Original Scope [60142.2]; Carpenter [18.18 h]; Laborer [36.36 h] | 60,142.24 |  | RD |
| MOD-ROC-PV-008 |  | Testing of installed pipeline for Road Crossing Zone 3 | 6d | 2027-01-21 | 2027-01-28 | MOD-ROC-PV-007 |  |  |  |  | -134.66d | 0d |  | Contract Price Original Scope [15035.6]; Technician [12 h]; Plumber [24 h] | 15,035.56 |  | RD |
| MOD-ROC-PV-009 |  | Backfilling and compaction in layers for Road Crossing Zone 3 | 10d | 2027-01-28 | 2027-02-11 | MOD-ROC-PV-008, MOD-GEI-PL-001 |  |  |  |  | -134.66d | 0d |  | Contract Price Original Scope [30071.1]; Compactor Operator [109.52 h]; Laborer [219.04 h] | 30,071.12 |  | RD |
| MOD-ROC-PV-010 |  | Reinstatement of road surface for Road Crossing Zone 3 | 6d | 2027-02-11 | 2027-02-24 | MOD-ROC-PV-009 |  |  |  |  | -134.66d | 0d |  | Contract Price Original Scope [15035.6]; Paver Operator [164.28 h]; Laborer [328.56 h] | 15,035.56 |  | RD |
|  | 16 | **GRP Road Crossing Pipes** |  | 2027-02-24 | 2027-06-30 |  |  |  |  |  |  |  |  |  |  |  |  |
|  | 17 | **Installation of GRP pipes (800mm–1000mm dia) for road crossings** |  | 2027-02-24 | 2027-06-30 |  |  |  |  |  |  |  |  |  |  |  |  |
| MOD-ROC-GR-002 |  | Set out location and coordinate with road authority for Road Crossing Zone 3 | 5d | 2027-02-24 | 2027-03-06 | MOD-ROC-PV-002, MOD-ROC-PV-010 |  |  |  |  | -37d | 0d |  | Contract Price Original Scope [11328.4]; Laborer [42.04 h]; Surveyor [42.04 h] | 11,328.37 |  | RD |
| MOD-ROC-GR-003 |  | Excavate trench across road at designed depth for Road Crossing Zone 3 | 12d | 2027-03-06 | 2027-03-25 | MOD-ROC-GR-002 |  |  |  |  | -37d | 0d |  | Contract Price Original Scope [22656.7]; Excavator Operator [42.04 h]; Laborer [84.08 h] | 22,656.74 |  | RD |
| MOD-ROC-GR-004 |  | Lay compacted granular bedding for Road Crossing Zone 3 | 16d | 2027-03-27 | 2027-04-13 | MOD-ROC-GR-003 |  |  |  |  | -37d | 0d |  | Contract Price Original Scope [33985.1]; Compactor Operator [29.09 h]; Laborer [58.18 h] | 33,985.11 |  | RD |
| MOD-ROC-GR-005 |  | Install GRP pipe (800mm & 1000mm dia) for Road Crossing Zone 3 | 21d | 2027-04-14 | 2027-05-08 | MOD-ROC-GR-004 |  |  |  |  | -37d | 0d |  | Contract Price Original Scope [90627]; Crane Operator [67.27 h]; Pipefitter [134.55 h] | 90,626.96 |  | RD |
| MOD-ROC-GR-006 |  | Provide structural supports and closure at both ends for Road Crossing Zone 3 | 9d | 2027-05-09 | 2027-05-23 | MOD-ROC-GR-005, A102810 |  |  |  |  | -37d | 0d |  | Contract Price Original Scope [22656.7]; Carpenter [16.36 h]; Laborer [32.73 h] | 22,656.74 |  | RD |
| MOD-ROC-GR-007 |  | Perform leak testing as per specifications for Road Crossing Zone 3 | 5d | 2027-05-24 | 2027-05-29 | MOD-ROC-GR-006 |  |  |  |  | -37d | 0d |  | Contract Price Original Scope [5664.19]; Technician [10 h]; Plumber [20 h] | 5,664.19 |  | RD |
| MOD-ROC-GR-008 |  | Backfill and compact in layers for Road Crossing Zone 3 | 15d | 2027-05-30 | 2027-06-15 | MOD-ROC-GR-007, MOD-GEI-PL-001 |  |  |  |  | -37d | 0d |  | Contract Price Original Scope [22656.7]; Compactor Operator [27.27 h]; Laborer [54.55 h] | 22,656.74 |  | RD |
| MOD-ROC-GR-009 |  | Reinstate road surface (asphalt/concrete) for Road Crossing Zone 3 | 8d | 2027-06-16 | 2027-06-24 | MOD-ROC-GR-008 |  |  |  |  | -37d | 0d |  | Contract Price Original Scope [11328.4]; Paver Operator [42.04 h]; Laborer [84.08 h] | 11,328.37 |  | RD |
| MOD-ROC-GR-010 |  | Final inspection and approval by relevant authority for Road Crossing Zone 3 | 5d | 2027-06-26 | 2027-06-30 | MOD-ROC-GR-009 |  |  |  |  | -37d | 94d |  | Contract Price Original Scope [5664.19]; Surveyor [10 h]; Technician [10 h] | 5,664.19 |  | RD |
|  | 8 | **Zone 2** |  | 2025-10-15 | 2027-08-02 |  |  |  |  |  |  |  |  |  |  |  |  |
|  | 5 | **Sewerage Network Zone 2** |  | 2026-01-04 | 2027-01-11 |  |  |  |  |  |  |  |  |  |  |  |  |
|  | 1 | **Pipework: Supply, Installation, and Testing** |  | 2026-01-04 | 2026-12-30 |  |  |  |  |  |  |  |  |  |  |  |  |
|  | 1 | **UPVC Pipes Installation (150mm–315mm)** |  | 2026-01-04 | 2026-04-15 |  |  |  |  |  |  |  |  |  |  |  |  |
| MOD-SWN-PW-485 |  | Excavation and Trenching UPVC for Sewerage Network Zone 2 | 21d | 2026-01-04 A | 2026-03-03 A | A102500, A102190, A1600 | 100% |  | 2026-01-10 | 2026-01-30 |  |  | 7-Day Workweek-9 | Contract Price Original Scope [73188.3]; Excavator Operator [344.83 h]; Laborer [689.66 h] | 73,188.29 | 73,188.29 | SW |
| MOD-SWN-PW-495 |  | Lean Concrete / Bedding UPVC for Sewerage Network Zone 2 | 21d | 2026-01-08 A | 2026-03-23 A | MOD-SWN-PW-485 | 100% |  | 2026-02-08 | 2026-03-01 |  |  | 7-Day Workweek-9 | Contract Price Original Scope [18297.1]; Laborer [160 h] | 18,297.07 | 18,297.07 | SW |
| MOD-SWN-PW-445 |  | UPVC Pipes Installation (150mm–315mm) UPVC for Sewerage Network Zone 2 | 13d | 2026-03-01 A | 2026-03-26 A | MOD-SWN-PW-485, MOD-SWN-PW-495, A1650 | 100% |  | 2026-06-13 | 2026-06-26 |  |  | 7-Day Workweek-9 | Contract Price Original Scope [164674]; Excavator Operator [47.27 h]; Pipefitter [94.55 h]; Laborer [94.55 h] | 164,673.65 | 164,673.65 | SW |
| MOD-SWN-PW-505 |  | Test (Pressure - Slope) UPVC for Sewerage Network Zone 2 | 15d | 2026-03-17 A | 2026-04-01 A | MOD-SWN-PW-445 | 100% |  | 2026-06-26 | 2026-07-11 |  |  | 7-Day Workweek-9 | Contract Price Original Scope [36594.2]; Pipefitter [10 h]; Technician [10 h] | 36,594.15 | 36,594.15 | SW |
| MOD-SWN-PW-515 |  | Coating / Wrapping UPVC for Sewerage Network Zone 2 | 15d | 2026-04-01 A | 2026-04-08 A | MOD-SWN-PW-505 | 100% |  | 2026-07-11 | 2026-07-26 |  |  | 7-Day Workweek-9 | Contract Price Original Scope [36594.2]; Laborer [300 h] | 36,594.15 | 36,594.15 | SW |
| MOD-SWN-PW-475 |  | Backfilling & Warrning Tape UPVC for Sewerage Network Zone 2 | 15d | 2026-04-08 A | 2026-04-15 A | MOD-SWN-PW-465, MOD-SWN-PW-515, MOD-GEI-PL-001 | 100% |  | 2026-07-26 | 2026-08-10 |  |  | 7-Day Workweek-9 | Contract Price Original Scope [36594.2]; Compactor Operator [0.02 h]; Laborer [0.04 h] | 36,594.15 | 36,594.15 | SW |

| ID | WBS | Activity | Duration | Start | Finish | Predecessors | Complete | Remaining | Planned start | Planned finish | Total float | Free float | Calendar | Resources | Cost | Actual cost | MOD-2937 |
| --- | --- | --- | --- | --- | --- | --- | --- | --- | --- | --- | --- | --- | --- | --- | --- | --- | --- |
|  | 2 | **GRP Pipes Installation (400mm–700mm)** |  | 2026-01-05 | 2026-04-06 |  |  |  |  |  |  |  |  |  |  |  |  |
| MOD-SWN-PW-535 |  | Excavation and Trenching GRP for Sewerage Network Zone 2 | 21d | 2026-01-05 A | 2026-02-05 A | A102500, A102190, A1600 | 100% |  | 2026-01-23 | 2026-02-12 |  |  | 7-Day Workweek-9 | Contract Price Original Scope [33028.3]; Excavator Operator [344.83 h]; Laborer [689.66 h] | 33,028.26 | 33,028.26 | SW |
| MOD-SWN-PW-545 |  | Lean Concrete / Bedding GRP for Sewerage Network Zone 2 | 21d | 2026-01-13 A | 2026-02-18 A | MOD-SWN-PW-535, MOD-SWN-PW-535 FF | 100% |  | 2026-02-13 | 2026-03-05 |  |  | 7-Day Workweek-9 | Contract Price Original Scope [8257.06]; Laborer [160 h] | 8,257.06 | 8,257.06 | SW |
| MOD-SWN-PW-455 |  | GRP Pipes Installation (400mm–700mm) GRP for Sewerage Network Zone 2 | 21d | 2026-02-01 A | 2026-02-18 A | MOD-SWN-PW-445 SS, MOD-SWN-PW-545, A102560, A1650 | 100% |  | 2026-06-13 | 2026-07-04 |  |  | 7-Day Workweek-9 | Contract Price Original Scope [74313.6]; Crane Operator [207.27 h]; Pipefitter [414.55 h]; Laborer [621.82 h] | 74,313.58 | 74,313.58 | SW |
| MOD-SWN-PW-555 |  | Test (Pressure - Slope) GRP for Sewerage Network Zone 2 | 15d | 2026-02-19 A | 2026-02-28 A | MOD-SWN-PW-455 | 100% |  | 2026-07-04 | 2026-07-19 |  |  | 7-Day Workweek-9 | Contract Price Original Scope [16514.1]; Pipefitter [10 h]; Technician [10 h] | 16,514.13 | 16,514.13 | SW |
| MOD-SWN-PW-565 |  | Coating / Wrapping GRP for Sewerage Network Zone 2 | 15d | 2026-02-28 A | 2026-04-01 A | MOD-SWN-PW-555, MOD-SWN-PW-555 FF | 100% |  | 2026-07-19 | 2026-08-03 |  |  | 7-Day Workweek-9 | Contract Price Original Scope [16514.1]; Laborer [300 h] | 16,514.13 | 16,514.13 | SW |
| MOD-SWN-PW-525 |  | Backfilling & Warrning Tape GRP for Sewerage Network Zone 2 | 15d | 2026-03-03 A | 2026-04-06 A | MOD-SWN-PW-565, MOD-SWN-PW-565 FF, MOD-GEI-PL-001 | 100% |  | 2026-08-03 | 2026-08-18 |  |  | 7-Day Workweek-9 | Contract Price Original Scope [16514.1]; Compactor Operator [0.02 h]; Laborer [0.04 h] | 16,514.13 | 16,514.13 | SW |
|  | 3 | **HDPE Pressure Pipes Installation (250mm–630mm)** |  | 2026-01-11 | 2026-12-30 |  |  |  |  |  |  |  |  |  |  |  |  |
| MOD-SWN-PW-585 |  | Excavation and Trenching HDPE for Sewerage Network Zone 2 | 21d | 2026-01-11 A | 2026-11-11 | A102500, A102190, A1600 | 80% | 4.2d | 2026-01-23 | 2026-02-12 | 59.1d | 0d | 7-Day Workweek-9 | Contract Price Original Scope [41673.4]; Excavator Operator [344.83 h]; Laborer [689.66 h] | 41,673.43 | 33,338.74 | SW |
| MOD-SWN-PW-595 |  | Lean Concrete / Bedding HDPE for Sewerage Network Zone 2 | 21d | 2026-01-15 A | 2026-11-19 | MOD-SWN-PW-585, MOD-SWN-PW-585 FF | 60% | 8.4d | 2026-02-13 | 2026-03-05 | 59.1d | 0d | 7-Day Workweek-9 | Contract Price Original Scope [10418.4]; Laborer [160 h] | 10,418.36 | 6,251.01 | SW |
| MOD-SWN-PW-465 |  | HDPE Pressure Pipes Installation (250mm–630mm) HDPE for Sewerage Network Zone 2 | 21d | 2026-02-09 A | 2026-11-30 | MOD-SWN-PW-455 SS, MOD-SWN-PW-595, A1650 | 50% | 10.5d | 2026-05-09 | 2026-05-30 | 59.1d | 0d | 7-Day Workweek-9 | Contract Price Original Scope [93765.2]; Pipefitter [261.11 h]; Laborer [522.22 h]; Welder [261.11 h] | 93,765.21 | 46,882.61 | SW |
| MOD-SWN-PW-605 |  | Test (Pressure - Slope) HDPE for Sewerage Network Zone 2 | 15d | 2026-03-16 A | 2026-12-07 | MOD-SWN-PW-465 | 50% | 7.5d | 2026-05-30 | 2026-06-14 | 77.7d | 0d | 7-Day Workweek-9 | Contract Price Original Scope [20836.7]; Pipefitter [10 h]; Technician [10 h] | 20,836.71 | 10,418.36 | SW |
| MOD-SWN-PW-615 |  | Coating / Wrapping HDPE for Sewerage Network Zone 2 | 15d | 2026-03-21 A | 2026-12-15 | MOD-SWN-PW-605, MOD-SWN-PW-605 FF | 44% | 8.4d | 2026-06-14 | 2026-06-29 | 77.7d | 0d | 7-Day Workweek-9 | Contract Price Original Scope [20836.7]; Laborer [300 h] | 20,836.71 | 9,168.15 | SW |
| MOD-SWN-PW-575 |  | Backfilling & Warrning Tape HDPE for Sewerage Network Zone 2 | 15d | 2026-12-16 | 2026-12-30 | MOD-SWN-PW-615, MOD-SWN-PW-615 FF, MOD-GEI-PL-001 |  |  |  |  | 77.7d | 11.5d | 7-Day Workweek-9 | Contract Price Original Scope [20836.7]; Compactor Operator [0.02 h]; Laborer [0.04 h] | 20,836.71 |  | SW |
|  | 2 | **Fittings and Valves** |  | 2026-11-30 | 2026-12-31 |  |  |  |  |  |  |  |  |  |  |  |  |
| MOD-SWN-FV-5 |  | Supply & Installation of HDPE Elbows for Sewerage Network Zone 2 | 6d | 2026-11-30 | 2026-12-07 | MOD-SWN-PW-465 |  |  |  |  | 51.1d | 0d |  | Contract Price Original Scope [13652.4]; Pipefitter [59.88 h]; Welder [59.88 h] | 13,652.43 |  | SW |
| MOD-SWN-FV-15 |  | Gate Valves Installation for Sewerage Network Zone 2 | 4d | 2026-12-07 | 2026-12-12 | MOD-SWN-FV-5, A102750 |  |  |  |  | 51.1d | 0d |  | Contract Price Original Scope [9660.6]; Laborer [4.16 h]; Plumber [4.16 h] | 9,660.6 |  | SW |
| MOD-SWN-FV-25 |  | Drain Valves Installation for Sewerage Network Zone 2 | 4d | 2026-12-12 | 2026-12-16 | MOD-SWN-FV-15 |  |  |  |  | 51.1d | 0d |  | Contract Price Original Scope [8785.65]; Laborer [5.76 h]; Plumber [5.76 h] | 8,785.65 |  | SW |
| MOD-SWN-FV-35 |  | Air Breather & Air Release Valves Installation for Sewerage Network Zone 2 | 10d | 2026-12-16 | 2026-12-28 | MOD-SWN-FV-25, A102780 |  |  |  |  | 51.1d | 0d |  | Contract Price Original Scope [23181.5]; Mechanical Technician [7.2 h]; Laborer [7.2 h] | 23,181.49 |  | SW |
| MOD-SWN-FV-45 |  | Jointing & Piping Accessories Installation for Sewerage Network Zone 2 | 3d | 2026-12-28 | 2026-12-31 | MOD-SWN-FV-35 |  |  |  |  | 51.1d | 9.3d |  | Contract Price Original Scope [6142.24]; Pipefitter [60.06 h] | 6,142.24 |  | SW |
|  | 3 | **Valve & Flow Meter Chambers** |  | 2026-07-01 | 2027-01-11 |  |  |  |  |  |  |  |  |  |  |  |  |
|  | 1 | **Valve Chambers Construction** |  | 2026-07-01 | 2026-12-21 |  |  |  |  |  |  |  |  |  |  |  |  |
| MOD-SWN-PW-975 |  | Excavation Valve Chamber for Sewerage Network Zone 2 | 21d | 2026-07-01 A | 2026-11-10 | A102500, A102190, A1600 | 82% | 3.78d | 2026-09-19 | 2026-10-09 | 66.27d | 0d | 7-Day Workweek-9 | Contract Price Original Scope [2068.22]; Excavator Operator [344.83 h]; Laborer [689.66 h] | 2,068.22 | 1,695.94 | SW |
| MOD-SWN-PW-985 |  | Lean Concrete / Bedding Valve Chamber for Sewerage Network Zone 2 | 21d | 2026-07-14 A | 2026-11-18 | MOD-SWN-PW-975, MOD-SWN-PW-975 FF, MOD-SWN-PW-975 SS | 63% | 7.77d | 2026-07-14 | 2026-08-03 | 66.27d | 0d | 7-Day Workweek-9 | Contract Price Original Scope [1378.81]; Laborer [160 h] | 1,378.81 | 868.65 | SW |
| MOD-SWN-VF-124 |  | Valve Chambers Construction Valve Chamber for Sewerage Network Zone 2 | 6d | 2026-07-28 A | 2026-11-21 | MOD-SWN-PW-985 | 52% | 2.88d | 2026-10-31 | 2026-11-05 | 66.27d | 0d | 7-Day Workweek-9 | Contract Price Original Scope [6204.65]; Mason [5 h]; Laborer [5 h]; Technician [5 h] | 6,204.65 | 3,226.42 | SW |
| MOD-SWN-PW-995 |  | Test Valve Chamber for Sewerage Network Zone 2 | 15d | 2026-11-21 | 2026-12-06 | MOD-SWN-VF-124 |  |  |  |  | 87.27d | 0d | 7-Day Workweek-9 | Contract Price Original Scope [1378.81]; Pipefitter [10 h]; Technician [10 h] | 1,378.81 |  | SW |
| MOD-SWN-PW-965 |  | Backfilling Valve Chamber for Sewerage Network Zone 2 | 15d | 2026-12-06 | 2026-12-21 | MOD-SWN-PW-995, MOD-GEI-PL-001 |  |  |  |  | 87.27d | 21.07d | 7-Day Workweek-9 | Contract Price Original Scope [2757.62]; Compactor Operator [0.02 h]; Laborer [0.04 h] | 2,757.62 |  | SW |

| ID | WBS | Activity | Duration | Start | Finish | Predecessors | Complete | Remaining | Planned start | Planned finish | Total float | Free float | Calendar | Resources | Cost | Actual cost | MOD-2937 |
| --- | --- | --- | --- | --- | --- | --- | --- | --- | --- | --- | --- | --- | --- | --- | --- | --- | --- |
|  | 2 | **Water Drain Chambers Construction** |  | 2026-07-28 | 2026-12-30 |  |  |  |  |  |  |  |  |  |  |  |  |
| MOD-SWN-PW-1015 |  | Excavation Water Drain Chamber for Sewerage Network Zone 2 | 21d | 2026-07-28 A | 2026-11-11 | A102500, A102190, A1600 | 80% | 4.2d | 2026-09-19 | 2026-10-09 | 68.1d | 0d | 7-Day Workweek-9 | Contract Price Original Scope [6718.28]; Excavator Operator [344.83 h]; Laborer [689.66 h] | 6,718.28 | 5,374.63 | SW |
| MOD-SWN-PW-1025 |  | Lean Concrete / Bedding Water Drain Chamber for Sewerage Network Zone 2 | 21d | 2026-08-01 A | 2026-11-19 | MOD-SWN-PW-1015, MOD-SWN-PW-1015 FF, MOD-SWN-PW-1015 SS | 60% | 8.4d | 2026-10-10 | 2026-10-30 | 68.1d | 1.83d | 7-Day Workweek-9 | Contract Price Original Scope [4478.86]; Laborer [160 h] | 4,478.86 | 2,687.31 | SW |
| MOD-SWN-VF-134 |  | Water Drain Chambers Construction Water Drain Chamber for Sewerage Network Zone 2 | 19d | 2026-08-18 A | 2026-11-30 | MOD-SWN-VF-124, MOD-SWN-PW-1025 | 50% | 9.5d | 2026-11-06 | 2026-11-24 | 66.27d | 0d | 7-Day Workweek-9 | Contract Price Original Scope [20154.8]; Mason [5 h]; Laborer [5 h]; Technician [5 h] | 20,154.85 | 10,077.42 | SW |
| MOD-SWN-PW-1035 |  | Test Water Drain Chamber for Sewerage Network Zone 2 | 15d | 2026-11-30 | 2026-12-15 | MOD-SWN-VF-134 |  |  |  |  | 77.77d | 0d | 7-Day Workweek-9 | Contract Price Original Scope [4478.86]; Pipefitter [10 h]; Technician [10 h] | 4,478.86 |  | SW |
| MOD-SWN-PW-1005 |  | Backfilling Water Drain Chamber for Sewerage Network Zone 2 | 15d | 2026-12-15 | 2026-12-30 | MOD-SWN-PW-1035, MOD-GEI-PL-001 |  |  |  |  | 77.77d | 11.57d | 7-Day Workweek-9 | Contract Price Original Scope [8957.71]; Compactor Operator [0.02 h]; Laborer [0.04 h] | 8,957.71 |  | SW |
|  | 3 | **Discharge Chambers Construction** |  | 2026-07-14 | 2027-01-06 |  |  |  |  |  |  |  |  |  |  |  |  |
| MOD-SWN-PW-1055 |  | Excavation Discharge Chamber for Sewerage Network Zone 2 | 21d | 2026-07-14 A | 2026-11-15 | A102500, A102190, A1600 | 60% | 8.4d | 2026-09-19 | 2026-10-09 | 71.3d | 0d | 7-Day Workweek-9 | Contract Price Original Scope [4693.08]; Excavator Operator [344.83 h]; Laborer [689.66 h] | 4,693.08 | 2,815.85 | SW |
| MOD-SWN-PW-1065 |  | Lean Concrete / Bedding Discharge Chamber for Sewerage Network Zone 2 | 21d | 2026-08-17 A | 2026-11-25 | MOD-SWN-PW-1055, MOD-SWN-PW-1055 FF, MOD-SWN-PW-1055 SS | 55% | 9.45d | 2026-10-10 | 2026-10-30 | 71.3d | 5.03d | 7-Day Workweek-9 | Contract Price Original Scope [3128.72]; Laborer [160 h] | 3,128.72 | 1,720.8 | SW |
| MOD-SWN-VF-144 |  | Discharge Chambers Construction Discharge Chamber for Sewerage Network Zone 2 | 13d | 2026-08-18 A | 2026-12-07 | MOD-SWN-VF-134, MOD-SWN-PW-1065 | 53% | 6.11d | 2026-10-21 | 2026-11-03 | 66.27d | 0d | 7-Day Workweek-9 | Contract Price Original Scope [14079.2]; Mason [5 h]; Laborer [5 h]; Technician [5 h] | 14,079.25 | 7,462 | SW |
| MOD-SWN-PW-1075 |  | Test Discharge Chamber for Sewerage Network Zone 2 | 15d | 2026-12-07 | 2026-12-22 | MOD-SWN-VF-144 |  |  |  |  | 71.27d | 0d | 7-Day Workweek-9 | Contract Price Original Scope [3128.72]; Pipefitter [10 h]; Technician [10 h] | 3,128.72 |  | SW |
| MOD-SWN-PW-1045 |  | Backfilling Discharge Chamber for Sewerage Network Zone 2 | 15d | 2026-12-22 | 2027-01-06 | MOD-SWN-PW-1075, MOD-GEI-PL-001 |  |  |  |  | 71.27d | 5.07d | 7-Day Workweek-9 | Contract Price Original Scope [6257.45]; Compactor Operator [0.02 h]; Laborer [0.04 h] | 6,257.45 |  | SW |
|  | 4 | **Flow Meter Chambers Construction** |  | 2026-08-19 | 2027-01-11 |  |  |  |  |  |  |  |  |  |  |  |  |
| MOD-SWN-PW-1095 |  | Excavation Flow Meter Chamber for Sewerage Network Zone 2 | 21d | 2026-08-19 A | 2026-11-15 | A102500, A102190, A1600 | 60% | 8.4d | 2026-09-19 | 2026-10-09 | 75.7d | 0d | 7-Day Workweek-9 | Contract Price Original Scope [1497.73]; Excavator Operator [344.83 h]; Laborer [689.66 h] | 1,497.73 | 898.64 | SW |
| MOD-SWN-PW-1105 |  | Lean Concrete / Bedding Flow Meter Chamber for Sewerage Network Zone 2 | 21d | 2026-08-26 A | 2026-11-27 | MOD-SWN-PW-1095, MOD-SWN-PW-1095 FF, MOD-SWN-PW-1095 SS | 40% | 12.6d | 2026-10-10 | 2026-10-30 | 75.7d | 9.43d | 7-Day Workweek-9 | Contract Price Original Scope [998.49]; Laborer [160 h] | 998.49 | 399.4 | SW |
| MOD-SWN-VF-154 |  | Flow Meter Chambers Construction Flow Meter Chamber for Sewerage Network Zone 2 | 5d | 2026-12-07 | 2026-12-12 | MOD-SWN-VF-144, MOD-SWN-PW-1105 |  |  |  |  | 66.27d | 0d | 7-Day Workweek-9 | Contract Price Original Scope [4493.2]; Mason [5 h]; Laborer [5 h]; Technician [5 h] | 4,493.2 |  | SW |
| MOD-SWN-PW-1115 |  | Test Flow Meter Chamber for Sewerage Network Zone 2 | 15d | 2026-12-12 | 2026-12-27 | MOD-SWN-VF-154 |  |  |  |  | 66.27d | 0d | 7-Day Workweek-9 | Contract Price Original Scope [998.49]; Pipefitter [10 h]; Technician [10 h] | 998.49 |  | SW |
| MOD-SWN-PW-1085 |  | Backfilling Flow Meter Chamber for Sewerage Network Zone 2 | 15d | 2026-12-27 | 2027-01-11 | MOD-SWN-PW-1115, MOD-GEI-PL-001 |  |  |  |  | 66.27d | 0.07d | 7-Day Workweek-9 | Contract Price Original Scope [1996.98]; Compactor Operator [0.02 h]; Laborer [0.04 h] | 1,996.98 |  | SW |
|  | 4 | **Manholes** |  | 2026-02-01 | 2026-12-16 |  |  |  |  |  |  |  |  |  |  |  |  |
| MOD-SWN-MH-45 |  | Depth Variation for Manholes for Sewerage Network Zone 2 | 8d | 2026-02-01 A | 2026-02-10 A | A102600 | 100% |  | 2026-04-18 | 2026-04-27 |  |  |  | Contract Price Original Scope [188.29]; Laborer [32 h]; Surveyor [32 h] | 188.29 | 188.29 | SW |
|  | 1 | **1200mm GRP Manholes with Backdrop** |  | 2026-02-01 | 2026-12-07 |  |  |  |  |  |  |  |  |  |  |  |  |
| MOD-SWN-PW-1455 |  | Excavation 1.2m GRP for Sewerage Network Zone 2 | 21d | 2026-02-01 A | 2026-11-08 | A102500, A102190, A1600 | 92% | 1.68d | 2026-02-21 | 2026-03-13 | 92.02d | 0d | 7-Day Workweek-9 | Contract Price Original Scope [126789]; Excavator Operator [344.83 h]; Laborer [689.66 h] | 126,788.74 | 116,645.64 | SW |
| MOD-SWN-PW-1465 |  | Lean Concrete / Bedding 1.2m GRP for Sewerage Network Zone 2 | 21d | 2026-02-07 A | 2026-11-10 | MOD-SWN-PW-1455, MOD-SWN-PW-1455 FF, MOD-SWN-PW-1455 SS | 90% | 2.1d | 2026-03-14 | 2026-04-03 | 92.02d | 0d | 7-Day Workweek-9 | Contract Price Original Scope [84525.8]; Laborer [160 h] | 84,525.83 | 76,073.24 | SW |
| MOD-SWN-MH-145 |  | 1200mm GRP Manholes with Backdrop 1.2m GRP for Sewerage Network Zone 2 | 21d | 2026-02-14 A | 2026-11-12 | MOD-SWN-PW-1465 | 90% | 2.1d | 2026-03-20 | 2026-04-10 | 92.02d | 0d | 7-Day Workweek-9 | Contract Price Original Scope [380366]; Boom Truck Operator [260.08 h]; Laborer [520.15 h] | 380,366.22 | 342,329.59 | SW |
| MOD-SWN-PW-1445 |  | Backfilling 1.2m GRP for Sewerage Network Zone 2 | 15d | 2026-10-28 A | 2026-12-07 | MOD-SWN-PW-1475, MOD-GEI-PL-001 | 37% | 9.45d | 2026-11-13 | 2026-11-28 | 101.37d | 35.17d | 7-Day Workweek-9 | Contract Price Original Scope [169052]; Compactor Operator [0.02 h]; Laborer [0.04 h] | 169,051.65 | 62,549.11 | SW |
| MOD-SWN-PW-1475 |  | Test 1.2m GRP for Sewerage Network Zone 2 | 15d | 2026-11-12 | 2026-11-27 | MOD-SWN-MH-145 |  |  |  |  | 101.37d | 0d | 7-Day Workweek-9 | Contract Price Original Scope [84525.8]; Pipefitter [10 h]; Technician [10 h] | 84,525.83 |  | SW |

| ID | WBS | Activity | Duration | Start | Finish | Predecessors | Complete | Remaining | Planned start | Planned finish | Total float | Free float | Calendar | Resources | Cost | Actual cost | MOD-2937 |
| --- | --- | --- | --- | --- | --- | --- | --- | --- | --- | --- | --- | --- | --- | --- | --- | --- | --- |
|  | 2 | **1500mm GRP Manholes (Standard & Backdrop)** |  | 2026-02-12 | 2026-12-09 |  |  |  |  |  |  |  |  |  |  |  |  |
| MOD-SWN-PW-1495 |  | Excavation 1.5m GRP for Sewerage Network Zone 2 | 21d | 2026-02-12 A | 2026-11-09 | A102500, A102190, A1600 | 90% | 2.1d | 2026-02-21 | 2026-03-13 | 93.7d | 0d | 7-Day Workweek-9 | Contract Price Original Scope [120079]; Excavator Operator [344.83 h]; Laborer [689.66 h] | 120,079.46 | 108,071.51 | SW |
| MOD-SWN-PW-1505 |  | Lean Concrete / Bedding 1.5m GRP for Sewerage Network Zone 2 | 21d | 2026-02-14 A | 2026-11-11 | MOD-SWN-PW-1495, MOD-SWN-PW-1495 FF, MOD-SWN-PW-1495 SS | 90% | 2.1d | 2026-03-14 | 2026-04-03 | 93.7d | 1.68d | 7-Day Workweek-9 | Contract Price Original Scope [80053]; Laborer [160 h] | 80,052.97 | 72,047.67 | SW |
| MOD-SWN-MH-155 |  | 1500mm GRP Manholes (Standard & Backdrop) 1.5m GRP for Sewerage Network Zone 2 | 21d | 2026-02-25 A | 2026-11-14 | MOD-SWN-MH-145, MOD-SWN-PW-1505 | 90% | 2.1d | 2026-04-09 | 2026-04-30 | 92.02d | 0d | 7-Day Workweek-9 | Contract Price Original Scope [360238]; Boom Truck Operator [109.88 h]; Laborer [219.76 h] | 360,238.37 | 324,214.54 | SW |
| MOD-SWN-PW-1485 |  | Backfilling 1.5m GRP for Sewerage Network Zone 2 | 15d | 2026-10-28 A | 2026-12-09 | MOD-SWN-PW-1515, MOD-GEI-PL-001 | 37% | 9.45d | 2026-11-15 | 2026-11-30 | 99.27d | 33.07d | 7-Day Workweek-9 | Contract Price Original Scope [160106]; Compactor Operator [0.02 h]; Laborer [0.04 h] | 160,105.94 | 59,239.2 | SW |
| MOD-SWN-PW-1515 |  | Test 1.5m GRP for Sewerage Network Zone 2 | 15d | 2026-11-14 | 2026-11-29 | MOD-SWN-MH-155 |  |  |  |  | 99.27d | 0d | 7-Day Workweek-9 | Contract Price Original Scope [80053]; Pipefitter [10 h]; Technician [10 h] | 80,052.97 |  | SW |
|  | 3 | **1800mm GRP Manholes (Standard & Backdrop)** |  | 2026-02-14 | 2026-12-16 |  |  |  |  |  |  |  |  |  |  |  |  |
| MOD-SWN-PW-1535 |  | Excavation 1.8m GRP for Sewerage Network Zone 2 | 21d | 2026-02-14 A | 2026-11-08 | A102500, A102190, A1600 | 94% | 1.26d | 2026-02-21 | 2026-03-13 | 97.06d | 0d | 7-Day Workweek-9 | Contract Price Original Scope [5990.45]; Excavator Operator [344.83 h]; Laborer [689.66 h] | 5,990.45 | 5,631.02 | SW |
| MOD-SWN-PW-1545 |  | Lean Concrete / Bedding 1.8m GRP for Sewerage Network Zone 2 | 21d | 2026-02-16 A | 2026-11-09 | MOD-SWN-PW-1535, MOD-SWN-PW-1535 FF, MOD-SWN-PW-1535 SS | 92% | 1.68d | 2026-03-14 | 2026-04-03 | 97.06d | 5.04d | 7-Day Workweek-9 | Contract Price Original Scope [3993.63]; Laborer [160 h] | 3,993.63 | 3,674.14 | SW |
| MOD-SWN-MH-165 |  | 1800mm GRP Manholes (Standard & Backdrop) 1.8m GRP for Sewerage Network Zone 2 | 17d | 2026-02-28 A | 2026-11-16 | MOD-SWN-MH-155, MOD-SWN-PW-1545 | 90% | 1.7d | 2026-04-30 | 2026-05-17 | 92.02d | 0d | 7-Day Workweek-9 | Contract Price Original Scope [17971.3]; Boom Truck Operator [6.63 h]; Laborer [13.27 h] | 17,971.35 | 16,174.22 | SW |
| MOD-SWN-PW-1555 |  | Test 1.8m GRP for Sewerage Network Zone 2 | 15d | 2026-11-16 | 2026-12-01 | MOD-SWN-MH-165 |  |  |  |  | 92.02d | 0d | 7-Day Workweek-9 | Contract Price Original Scope [3993.63]; Pipefitter [10 h]; Technician [10 h] | 3,993.63 |  | SW |
| MOD-SWN-PW-1525 |  | Backfilling 1.8m GRP for Sewerage Network Zone 2 | 15d | 2026-12-01 | 2026-12-16 | MOD-SWN-PW-1555, MOD-GEI-PL-001 |  |  |  |  | 92.02d | 25.82d | 7-Day Workweek-9 | Contract Price Original Scope [7987.27]; Compactor Operator [0.02 h]; Laborer [0.04 h] | 7,987.27 |  | SW |
|  | 4 | **2000mm GRP Manholes (Standard & Backdrop)** |  | 2026-02-14 | 2026-12-11 |  |  |  |  |  |  |  |  |  |  |  |  |
| MOD-SWN-PW-1575 |  | Excavation 2m GRP for Sewerage Network Zone 2 | 21d | 2026-02-14 A | 2026-11-08 | A102500, A102190, A1600 | 93% | 1.47d | 2026-02-21 | 2026-03-13 | 103.08d | 0d | 7-Day Workweek-9 | Contract Price Original Scope [1897.06]; Excavator Operator [344.83 h]; Laborer [689.66 h] | 1,897.06 | 1,764.26 | SW |
| MOD-SWN-PW-1585 |  | Lean Concrete / Bedding 2m GRP for Sewerage Network Zone 2 | 21d | 2026-03-16 A | 2026-11-10 | MOD-SWN-PW-1575, MOD-SWN-PW-1575 FF, MOD-SWN-PW-1575 SS | 90% | 2.1d | 2026-03-14 | 2026-04-03 | 103.08d | 6.11d | 7-Day Workweek-9 | Contract Price Original Scope [1264.7]; Laborer [160 h] | 1,264.7 | 1,138.23 | SW |
| MOD-SWN-MH-175 |  | 2000mm GRP Manholes (Standard & Backdrop) 2m GRP for Sewerage Network Zone 2 | 6d | 2026-03-22 A | 2026-11-17 | MOD-SWN-MH-165, MOD-SWN-PW-1585 | 90% | 0.6d | 2026-05-31 | 2026-06-06 | 96.97d | 0d | 7-Day Workweek-9 | Contract Price Original Scope [5691.17]; Boom Truck Operator [1.95 h]; Laborer [3.9 h] | 5,691.17 | 5,122.05 | SW |
| MOD-SWN-PW-1565 |  | Backfilling 2m GRP for Sewerage Network Zone 2 | 15d | 2026-10-29 A | 2026-12-11 | MOD-SWN-PW-1595, MOD-GEI-PL-001 | 37% | 9.45d | 2026-11-18 | 2026-12-03 | 96.97d | 30.77d | 7-Day Workweek-9 | Contract Price Original Scope [2529.41]; Compactor Operator [0.02 h]; Laborer [0.04 h] | 2,529.41 | 935.88 | SW |
| MOD-SWN-PW-1595 |  | Test 2m GRP for Sewerage Network Zone 2 | 15d | 2026-11-17 | 2026-12-02 | MOD-SWN-MH-175 |  |  |  |  | 96.97d | 0d | 7-Day Workweek-9 | Contract Price Original Scope [1264.7]; Pipefitter [10 h]; Technician [10 h] | 1,264.7 |  | SW |
|  | 6 | **Rainwater Drainage Network Zone 2** |  | 2025-10-15 | 2026-12-14 |  |  |  |  |  |  |  |  |  |  |  |  |
|  | 1 | **Pipe Laying Works** |  | 2025-11-26 | 2026-11-11 |  |  |  |  |  |  |  |  |  |  |  |  |
|  | 2 | **Supply & Installation of uPVC Pipes (250–300mm dia)** |  | 2025-11-26 | 2026-11-08 |  |  |  |  |  |  |  |  |  |  |  |  |
| MOD-RWN-PL-733 |  | Excavation to required depth UPVC for Rainwater Drainage Network Zone 2 | 21d | 2025-11-26 A | 2026-01-26 A | A102500, A102190, A1600 | 100% |  | 2025-12-21 | 2026-01-10 |  |  | 7-Day Workweek-9 | Contract Price Original Scope [150778]; Excavator Operator [344.83 h]; Laborer [689.66 h] | 150,777.85 | 150,777.85 | RW |
| MOD-RWN-PL-743 |  | Lean Concrete / Bedding UPVC for Rainwater Drainage Network Zone 2 | 5d | 2025-11-29 A | 2026-06-24 A | MOD-RWN-PL-733 | 100% |  | 2026-01-05 | 2026-01-10 |  |  | 7-Day Workweek-9 | Contract Price Original Scope [37694.5]; Laborer [160 h] | 37,694.46 | 37,694.46 | RW |
| MOD-RWN-PL-753 |  | Laying of uPVC pipe UPVC for Rainwater Drainage Network Zone 2 | 19d | 2025-12-01 A | 2026-11-07 | MOD-RWN-PL-743 | 99% | 0.19d | 2026-01-16 | 2026-02-03 | -107.3d | 0d | 7-Day Workweek-9 | Contract Price Original Scope [339250]; Excavator Operator [125.03 h]; Pipefitter [250.07 h]; Laborer [250.07 h] | 339,250.17 | 335,857.67 | RW |
| MOD-RWN-PL-763 |  | Coating / Wrapping UPVC for Rainwater Drainage Network Zone 2 | 2d | 2026-01-04 A | 2026-11-07 | MOD-RWN-PL-773 | 90% | 0.2d | 2026-02-17 | 2026-02-19 | -103.6d | 37.39d | 7-Day Workweek-9 | Contract Price Original Scope [75388.9]; Laborer [40 h] | 75,388.93 | 67,850.03 | RW |
| MOD-RWN-PL-773 |  | Test (Pressure-slope) UPVC for Rainwater Drainage Network Zone 2 | 3d | 2026-01-04 A | 2026-11-07 | MOD-RWN-PL-753 | 95% | 0.15d | 2026-02-07 | 2026-02-10 | -107.3d | 0d | 7-Day Workweek-9 | Contract Price Original Scope [75388.9]; Pipefitter [10 h]; Technician [10 h] | 75,388.93 | 71,619.48 | RW |
| MOD-RWN-PL-783 |  | Backfilling & Warning Tape UPVC for Rainwater Drainage Network Zone 2 | 8d | 2026-01-04 A | 2026-11-08 | MOD-RWN-PL-773, MOD-GEI-PL-001 | 82% | 1.44d | 2026-02-10 | 2026-02-18 | -104.84d | 36.15d | 7-Day Workweek-9 | Contract Price Original Scope [75388.9]; Compactor Operator [0.02 h]; Laborer [0.04 h] | 75,388.93 | 61,818.92 | RW |

| ID | WBS | Activity | Duration | Start | Finish | Predecessors | Complete | Remaining | Planned start | Planned finish | Total float | Free float | Calendar | Resources | Cost | Actual cost | MOD-2937 |
| --- | --- | --- | --- | --- | --- | --- | --- | --- | --- | --- | --- | --- | --- | --- | --- | --- | --- |
|  | 3 | **Supply & Installation of GRP Pipes (350–800mm dia)** |  | 2025-11-27 | 2026-08-16 |  |  |  |  |  |  |  |  |  |  |  |  |
| MOD-RWN-PL-793 |  | Excavate short trench paths GRP for Rainwater Drainage Network Zone 2 | 21d | 2025-11-27 A | 2026-02-03 A | A102500, A102190 | 100% |  | 2025-12-21 | 2026-01-10 |  |  | 7-Day Workweek-9 | Contract Price Original Scope [68891.8]; Excavator Operator [344.83 h]; Laborer [689.66 h] | 68,891.76 | 68,891.76 | RW |
| MOD-RWN-PL-803 |  | Lean Concrete / bedding material GRP for Rainwater Drainage Network Zone 2 | 8d | 2025-11-30 A | 2026-08-15 A | MOD-RWN-PL-793 | 100% |  | 2026-01-05 | 2026-01-13 |  |  | 7-Day Workweek-9 | Contract Price Original Scope [17222.9]; Laborer [160 h] | 17,222.94 | 17,222.94 | RW |
| MOD-RWN-PL-813 |  | Lay & connect GRP for Rainwater Drainage Network Zone 2 | 21d | 2025-12-01 A | 2026-08-16 A | MOD-RWN-PL-803 | 100% |  | 2026-01-11 | 2026-02-01 |  |  | 7-Day Workweek-9 | Contract Price Original Scope [155006]; Excavator Operator [29.59 h]; Pipefitter [59.19 h]; Laborer [59.19 h] | 155,006.47 | 155,006.47 | RW |
| MOD-RWN-PL-823 |  | Test (Pressure-slope) GRP for Rainwater Drainage Network Zone 2 | 11d | 2026-01-04 A | 2026-08-16 A | MOD-RWN-PL-813 | 100% |  | 2026-02-11 | 2026-02-22 |  |  | 7-Day Workweek-9 | Contract Price Original Scope [34445.9]; Pipefitter [10 h]; Technician [10 h] | 34,445.88 | 34,445.88 | RW |
| MOD-RWN-PL-833 |  | Backfilling & compaction GRP for Rainwater Drainage Network Zone 2 | 10d | 2026-01-04 A | 2026-08-16 A | MOD-RWN-PL-823, MOD-RWN-PL-893, MOD-GEI-PL-001 | 100% |  | 2026-03-15 | 2026-03-25 |  |  | 7-Day Workweek-9 | Contract Price Original Scope [34445.9]; Compactor Operator [0.02 h]; Laborer [0.04 h] | 34,445.88 | 34,445.88 | RW |
| MOD-RWN-PL-893 |  | Coating / Wrapping GRP for Rainwater Drainage Network Zone 2 | 21d | 2026-01-09 A | 2026-08-16 A | MOD-RWN-PL-823 | 100% |  | 2026-03-06 | 2026-03-27 |  |  | 7-Day Workweek-9 | Contract Price Original Scope [34445.9]; Laborer [420 h] | 34,445.88 | 34,445.88 | RW |
|  | 4 | **uPVC Connection Pipes (150mm dia)** |  | 2025-11-26 | 2026-11-11 |  |  |  |  |  |  |  |  |  |  |  |  |
| MOD-RWN-PL-843 |  | Excavate short trench paths UPVC Con. for Rainwater Drainage Network Zone 2 | 5d | 2025-11-26 A | 2026-01-13 A | A102500, A102190 | 100% |  | 2025-12-21 | 2025-12-25 |  |  | 7-Day Workweek-9 | Contract Price Original Scope [16851.4]; Excavator Operator [344.83 h]; Laborer [689.66 h] | 16,851.43 | 16,851.43 | RW |
| MOD-RWN-PL-853 |  | Lean Concrete / bedding material UPVC Con. for Rainwater Drainage Network Zone 2 | 3d | 2025-12-01 A | 2026-11-07 | MOD-RWN-PL-843 | 95% | 0.15d | 2025-12-26 | 2025-12-28 | -107.26d | 0.04d | 7-Day Workweek-9 | Contract Price Original Scope [4212.86]; Laborer [160 h] | 4,212.86 | 4,002.21 | RW |
| MOD-RWN-PL-863 |  | Lay & connect UPVC Con. for Rainwater Drainage Network Zone 2 | 8d | 2025-12-09 A | 2026-11-07 | MOD-RWN-PL-853, MOD-RWN-PL-773 SS | 95% | 0.4d | 2026-01-22 | 2026-01-30 | -107.3d | 0d | 7-Day Workweek-9 | Contract Price Original Scope [37915.7]; Excavator Operator [114.14 h]; Pipefitter [228.28 h]; Laborer [228.28 h] | 37,915.71 | 36,019.93 | RW |
| MOD-RWN-PL-873 |  | Test (Pressure-slope) UPVC Con. for Rainwater Drainage Network Zone 2 | 3d | 2026-01-02 A | 2026-11-07 | MOD-RWN-PL-863 | 90% | 0.3d | 2026-02-14 | 2026-02-17 | -107.3d | 0d | 7-Day Workweek-9 | Contract Price Original Scope [8425.71]; Pipefitter [10 h]; Technician [10 h] | 8,425.71 | 7,583.14 | RW |
| MOD-RWN-PL-883 |  | Backfilling & compaction UPVC Con. for Rainwater Drainage Network Zone 2 | 2d | 2026-01-04 A | 2026-11-11 | MOD-RWN-PL-873, MOD-RWN-PL-903, MOD-GEI-PL-001 | 90% | 0.2d | 2026-03-10 | 2026-03-12 | -107.3d | 33.69d | 7-Day Workweek-9 | Contract Price Original Scope [8425.71]; Compactor Operator [0.02 h]; Laborer [0.04 h] | 8,425.71 | 7,583.14 | RW |
| MOD-RWN-PL-903 |  | Coating / Wrapping UPVC Con. for Rainwater Drainage Network Zone 2 | 21d | 2026-01-12 A | 2026-11-11 | MOD-RWN-PL-873 | 85% | 3.15d | 2026-03-01 | 2026-03-22 | -107.3d | 0d | 7-Day Workweek-9 | Contract Price Original Scope [8425.71]; Laborer [420 h] | 8,425.71 | 7,161.86 | RW |
|  | 5 | **Precast Concrete Box Culverts** |  | 2026-04-01 | 2026-12-14 |  |  |  |  |  |  |  |  |  |  |  |  |
|  | 1 | **Box Culverts (500x500mm to 3500x800mm)** |  | 2026-04-01 | 2026-12-14 |  |  |  |  |  |  |  |  |  |  |  |  |
| MOD-RWN-PC-24 |  | Survey and layout alignment Box culvert for Rainwater Drainage Network Zone 2 | 3d | 2026-04-01 A | 2026-04-08 A | MOD-RWN-PL-793 SS | 100% |  | 2026-05-09 | 2026-05-11 |  |  |  | Contract Price Original Scope [13250.4]; Laborer [69.93 h]; Surveyor [69.93 h] | 13,250.44 | 13,250.44 | RW |
| MOD-RWN-PC-474 |  | Setting Benchmark Box culvert for Rainwater Drainage Network Zone 2 | 3d | 2026-04-05 A | 2026-04-11 A | MOD-RWN-PC-24 | 100% |  | 2026-05-12 | 2026-05-14 |  |  |  | Contract Price Original Scope [13250.4]; Laborer [375 h]; Surveyor [375 h] | 13,250.44 | 13,250.44 | RW |
| MOD-RWN-PC-484 |  | Cleaning Box culvert for Rainwater Drainage Network Zone 2 | 4d | 2026-04-09 A | 2026-04-13 A | MOD-RWN-PC-474 | 100% |  | 2026-05-16 | 2026-05-19 |  |  |  | Contract Price Original Scope [13250.4]; Laborer [1050 h] | 13,250.44 | 13,250.44 | RW |
| MOD-RWN-PC-494 |  | Testing Box culvert for Rainwater Drainage Network Zone 2 | 3d | 2026-04-11 A | 2026-04-16 A | MOD-RWN-PC-484 | 100% |  | 2026-05-20 | 2026-05-23 |  |  |  | Contract Price Original Scope [13250.4]; Laborer [1575 h] | 13,250.44 | 13,250.44 | RW |
| MOD-RWN-PC-34 |  | Excavation to required depth Box culvert for Rainwater Drainage Network Zone 2 | 10d | 2026-04-25 A | 2026-11-08 | MOD-RWN-PC-24, MOD-RWN-PC-494, A1600 | 85% | 1.5d | 2026-05-24 | 2026-06-08 | -119.99d | 0d |  | Contract Price Original Scope [530018]; Excavator Operator [29.23 h]; Laborer [58.47 h] | 530,017.55 | 450,514.92 | RW |
| MOD-RWN-PC-44 |  | Dewatering and trench shoring Box culvert for Rainwater Drainage Network Zone 2 | 7d | 2026-04-27 A | 2026-11-10 | MOD-RWN-PC-34 | 65% | 2.45d | 2026-05-21 | 2026-06-02 | -119.99d | 0d |  | Contract Price Original Scope [424014]; Pump Operator [303.03 h]; Laborer [303.03 h] | 424,014.04 | 275,609.13 | RW |
| MOD-RWN-PC-54 |  | Bedding preparation (gravel/lean concrete) Box culvert for Rainwater Drainage Network Zone 2 | 6d | 2026-04-30 A | 2026-11-14 | MOD-RWN-PC-44 | 55% | 2.7d | 2026-06-03 | 2026-06-09 | -119.99d | 0d |  | Contract Price Original Scope [159005]; Laborer [160 h] | 159,005.27 | 87,452.9 | RW |
| MOD-RWN-PC-64 |  | Installation of box culvert units Box culvert for Rainwater Drainage Network Zone 2 | 5d | 2026-11-14 | 2026-11-19 | MOD-RWN-PC-54 |  |  |  |  | -119.99d | 0d |  | Contract Price Original Scope [636021]; Crane Operator [149.25 h]; Laborer [597.01 h] | 636,021.07 |  | RW |
| MOD-RWN-PC-74 |  | Alignment and joint sealing Box culvert for Rainwater Drainage Network Zone 2 | 4d | 2026-11-19 | 2026-11-24 | MOD-RWN-PC-64 |  |  |  |  | -119.61d | 0d |  | Contract Price Original Scope [74202.5]; Mason [80 h] | 74,202.46 |  | RW |
| MOD-RWN-PC-84 |  | Construct headwalls/wing walls (if needed) Box culvert for Rainwater Drainage Network Zone 2 | 7d | 2026-11-24 | 2026-12-02 | MOD-RWN-PC-74, A102810 |  |  |  |  | -119.61d | 0d |  | Contract Price Original Scope [106004]; Mason [444.44 h]; Laborer [444.44 h] | 106,003.51 |  | RW |
| MOD-RWN-PC-94 |  | Backfilling and compaction Box culvert for Rainwater Drainage Network Zone 2 | 6d | 2026-12-02 | 2026-12-09 | MOD-RWN-PC-84, MOD-GEI-PL-001 |  |  |  |  | -119.61d | 0d |  | Contract Price Original Scope [74202.5] | 74,202.46 |  | RW |
| MOD-RWN-PC-104 |  | Surface finishing Box culvert for Rainwater Drainage Network Zone 2 | 3d | 2026-12-10 | 2026-12-14 | MOD-RWN-PC-94 FS+0.9d |  |  |  |  | -119.61d | 0.38d |  | Contract Price Original Scope [63602.1]; Laborer [60.06 h] | 63,602.11 |  | RW |

| ID | WBS | Activity | Duration | Start | Finish | Predecessors | Complete | Remaining | Planned start | Planned finish | Total float | Free float | Resources | Cost | Actual cost | MOD-2937 |
| --- | --- | --- | --- | --- | --- | --- | --- | --- | --- | --- | --- | --- | --- | --- | --- | --- |
|  | 2 | **Tube Culverts at Road Intersections** |  | 2026-04-09 | 2026-11-14 |  |  |  |  |  |  |  |  |  |  |  |
| MOD-RWN-PC-114 |  | Traffic control setup Tube culvert for Rainwater Drainage Network Zone 2 | 2d | 2026-04-09 A | 2026-04-13 A | MOD-RWN-PC-34 | 100% |  | 2026-06-09 | 2026-06-10 |  |  | Contract Price Original Scope [4474.41]; Flaggers [40 h] | 4,474.41 | 4,474.41 | RW |
| MOD-RWN-PC-124 |  | Trench excavation under road Tube culvert for Rainwater Drainage Network Zone 2 | 11d | 2026-04-18 A | 2026-11-14 | MOD-RWN-PC-114, A102790 | 55% | 4.95d | 2026-06-11 | 2026-06-23 | -93.51d | 0d | Contract Price Original Scope [25056.7] | 25,056.68 | 13,781.17 | RW |
| MOD-RWN-PC-134 |  | Pipe bedding and twin pipe alignment Tube culvert for Rainwater Drainage Network Zone 2 | 6d | 2026-05-02 A | 2026-05-07 A | MOD-RWN-PC-124 | 100% |  | 2026-06-08 | 2026-06-15 |  |  | Contract Price Original Scope [13423.2]; Laborer [119.76 h] | 13,423.22 | 13,423.22 | RW |
| MOD-RWN-PC-144 |  | Pipe laying and jointing Tube culvert for Rainwater Drainage Network Zone 2 | 10d | 2026-05-04 A | 2026-05-12 A | MOD-RWN-PC-134, A102740, A1650 | 100% |  | 2026-06-15 | 2026-06-27 |  |  | Contract Price Original Scope [118124]; Crane Operator [19.75 h]; Laborer [59.27 h] | 118,124.35 | 118,124.35 | RW |
| MOD-RWN-PC-154 |  | Backfilling and road reinstatement Tube culvert for Rainwater Drainage Network Zone 2 | 5d | 2026-05-07 A | 2026-05-16 A | MOD-RWN-PC-144 FS+0.9d, MOD-GEI-PL-001 | 100% |  | 2026-06-28 | 2026-07-04 |  |  | Contract Price Original Scope [17897.6] | 17,897.63 | 17,897.63 | RW |
|  | 3 | **Box Culverts at Road Intersections** |  | 2026-04-22 | 2026-12-08 |  |  |  |  |  |  |  |  |  |  |  |
| MOD-RWN-PC-164 |  | Traffic diversion and barricading for Rainwater Drainage Network Zone 2 | 15d | 2026-04-22 A | 2026-05-28 A | MOD-RWN-PC-114 | 100% |  | 2026-06-11 | 2026-06-28 |  |  | Contract Price Original Scope [360.68]; Flaggers [298.51 h] | 360.68 | 360.68 | RW |
| MOD-RWN-PC-174 |  | Deep trench excavation with shoring for Rainwater Drainage Network Zone 2 | 1d | 2026-04-27 A | 2026-04-30 A | MOD-RWN-PC-164 | 100% |  | 2026-05-21 | 2026-05-21 |  |  | Contract Price Original Scope [2019.79] | 2,019.79 | 2,019.79 | RW |
| MOD-RWN-PC-184 |  | Place bedding material for Rainwater Drainage Network Zone 2 | 1d | 2026-05-02 A | 2026-11-08 | MOD-RWN-PC-174 | 50% | 0.5d | 2026-05-23 | 2026-05-23 | -114.96d | 0d | Contract Price Original Scope [1082.03]; Laborer [400 h] | 1,082.03 | 541.02 | RW |
| MOD-RWN-PC-194 |  | Install precast box culvert for Rainwater Drainage Network Zone 2 | 4d | 2026-11-09 | 2026-11-12 | MOD-RWN-PC-184 |  |  |  |  | -114.96d | 0d | Contract Price Original Scope [9377.62]; Crane Operator [16 h]; Laborer [64 h] | 9,377.62 |  | RW |
| MOD-RWN-PC-204 |  | Construct connection chambers (if needed) for Rainwater Drainage Network Zone 2 | 1d | 2026-11-14 | 2026-11-14 | MOD-RWN-PC-194, A102810 |  |  |  |  | -114.96d | 0d | Contract Price Original Scope [1082.03]; Mason [20 h]; Laborer [20 h] | 1,082.03 |  | RW |
| MOD-RWN-PC-214 |  | Joint treatment and testing for Rainwater Drainage Network Zone 2 | 12d | 2026-11-15 | 2026-11-28 | MOD-RWN-PC-204 |  |  |  |  | -114.96d | 0d | Contract Price Original Scope [288.54]; Mason [20 h] | 288.54 |  | RW |
| MOD-RWN-PC-224 |  | Backfilling and surface reinstatement for Rainwater Drainage Network Zone 2 | 8d | 2026-11-29 | 2026-12-08 | MOD-RWN-PC-214 FS+0.9d, MOD-GEI-PL-001 |  |  |  |  | -114.96d | 5.03d | Contract Price Original Scope [216.41] | 216.41 |  | RW |
|  | 4 | **Manholes** |  | 2026-01-01 | 2026-12-14 |  |  |  |  |  |  |  |  |  |  |  |
|  | 1 | **Circular GRP Manholes (1200–1800mm dia)** |  | 2026-01-01 | 2026-11-26 |  |  |  |  |  |  |  |  |  |  |  |
| MOD-RWN-MH-24 |  | Excavate to full manhole depth Circular Manhole for Rainwater Drainage Network Zone 2 | 4d | 2026-01-01 A | 2026-07-14 A | MOD-RWN-PC-64 SS | 100% |  | 2026-03-18 | 2026-03-28 |  |  | Contract Price Original Scope [16009.6]; Excavator Operator [28 h]; Laborer [56 h] | 16,009.61 | 16,009.61 | RW |
| MOD-RWN-MH-34 |  | Dewatering and safety barriers Circular Manhole for Rainwater Drainage Network Zone 2 | 7d | 2026-01-05 A | 2026-11-15 | MOD-RWN-MH-24 | 85% | 1.05d | 2026-03-28 | 2026-04-05 | -104.66d | 0d | Contract Price Original Scope [139512]; Carpenter [100 h]; Laborer [100 h] | 139,512.34 | 118,585.49 | RW |
| MOD-RWN-MH-44 |  | Concrete base construction Circular Manhole for Rainwater Drainage Network Zone 2 | 5d | 2026-01-06 A | 2026-11-16 | MOD-RWN-MH-34, A103770 | 85% | 0.75d | 2026-04-05 | 2026-04-11 | -104.66d | 0d | Contract Price Original Scope [137225]; Carpenter [20 h]; Laborer [40 h] | 137,225.25 | 116,641.47 | RW |
| MOD-RWN-MH-54 |  | Install GRP manhole shaft sections Circular Manhole for Rainwater Drainage Network Zone 2 | 8d | 2026-01-07 A | 2026-11-18 | MOD-RWN-MH-44, A102600 | 75% | 2d | 2026-04-11 | 2026-04-20 | -104.66d | 0d | Contract Price Original Scope [114354]; Boom Truck Operator [52 h]; Laborer [104 h] | 114,354.38 | 85,765.78 | RW |
| MOD-RWN-MH-64 |  | Place slab and cover frame Circular Manhole for Rainwater Drainage Network Zone 2 | 3d | 2026-07-06 A | 2026-11-21 | MOD-RWN-MH-54 | 25% | 2.25d | 2026-08-04 | 2026-08-08 | -104.66d | 0d | Contract Price Original Scope [34306.3]; Boom Truck Operator [24 h]; Laborer [48 h] | 34,306.31 | 8,576.58 | RW |
| MOD-RWN-MH-74 |  | Waterproofing Circular Manhole for Rainwater Drainage Network Zone 2 | 2d | 2026-11-21 | 2026-11-23 | MOD-RWN-MH-64 |  |  |  |  | -104.66d | 0d | Contract Price Original Scope [9148.35]; Carpenter [16 h]; Laborer [16 h] | 9,148.35 |  | RW |
| MOD-RWN-MH-84 |  | Backfilling and compaction Circular Manhole for Rainwater Drainage Network Zone 2 | 2d | 2026-11-24 | 2026-11-26 | MOD-RWN-MH-74 FS+0.9d, MOD-GEI-PL-001 |  |  |  |  | -104.66d | 15.33d | Contract Price Original Scope [6861.26]; Compactor Operator [1.76 h]; Laborer [5.28 h] | 6,861.26 |  | RW |
|  | 3 | **Concrete Manholes for 1500x1500 Box Pipes** |  | 2026-02-10 | 2026-11-29 |  |  |  |  |  |  |  |  |  |  |  |
| MOD-RWN-MH-164 |  | Excavation Concrete Manhole 1.5x1.5 for Rainwater Drainage Network Zone 2 | 5d | 2026-02-10 A | 2026-07-15 A | MOD-RWN-PC-64 SS, A1600 | 100% |  | 2026-06-10 | 2026-06-15 |  |  | Contract Price Original Scope [24815.3]; Excavator Operator [3 h]; Laborer [5.99 h] | 24,815.3 | 24,815.3 | RW |
| MOD-RWN-MH-174 |  | Base slab and wall shuttering Concrete Manhole 1.5x1.5 for Rainwater Drainage Network Zone 2 | 4d | 2026-02-16 A | 2026-11-15 | MOD-RWN-MH-164 | 75% | 1d | 2026-06-16 | 2026-06-20 | -106.66d | 0d | Contract Price Original Scope [216248]; Carpenter [34.61 h]; Laborer [17.31 h] | 216,247.62 | 162,185.71 | RW |
| MOD-RWN-MH-184 |  | Wall reinforcement and casting Concrete Manhole 1.5x1.5 for Rainwater Drainage Network Zone 2 | 6d | 2026-03-01 A | 2026-11-18 | MOD-RWN-MH-174 | 60% | 2.4d | 2026-06-21 | 2026-06-27 | -106.66d | 0d | Contract Price Original Scope [212703]; Carpenter [30.29 h]; Laborer [60.57 h] | 212,702.58 | 127,621.55 | RW |
| MOD-RWN-MH-194 |  | Roof slab with openings Concrete Manhole 1.5x1.5 for Rainwater Drainage Network Zone 2 | 3d | 2026-07-05 A | 2026-11-21 | MOD-RWN-MH-184 | 15% | 2.55d | 2026-08-02 | 2026-08-05 | -106.66d | 0d | Contract Price Original Scope [177252]; Boom Truck Operator [51.92 h]; Laborer [103.84 h] | 177,252.15 | 26,587.82 | RW |
| MOD-RWN-MH-204 |  | Masonry/benching works inside Concrete Manhole 1.5x1.5 for Rainwater Drainage Network Zone 2 | 2d | 2026-11-21 | 2026-11-23 | MOD-RWN-MH-194 |  |  |  |  | -106.66d | 0d | Contract Price Original Scope [53175.6]; Carpenter [56.25 h]; Laborer [56.25 h] | 53,175.64 |  | RW |
| MOD-RWN-MH-214 |  | Install cover and frame Concrete Manhole 1.5x1.5 for Rainwater Drainage Network Zone 2 | 2d | 2026-11-23 | 2026-11-25 | MOD-RWN-MH-204, A102580 |  |  |  |  | -106.66d | 0d | Contract Price Original Scope [14180.2]; Boom Truck Operator [17.31 h]; Laborer [34.61 h] | 14,180.17 |  | RW |
| MOD-RWN-MH-224 |  | Backfill in layers Concrete Manhole 1.5x1.5 for Rainwater Drainage Network Zone 2 | 3d | 2026-11-25 | 2026-11-29 | MOD-RWN-MH-214, MOD-GEI-PL-001 |  |  |  |  | -106.66d | 13.33d | Contract Price Original Scope [10635.1]; Excavator Operator [12.98 h]; Compactor Operator [12.98 h]; Laborer [25.96 h] | 10,635.13 |  | RW |

| ID | WBS | Activity | Duration | Start | Finish | Predecessors | Complete | Remaining | Planned start | Planned finish | Total float | Free float | Resources | Cost | Actual cost | MOD-2937 |
| --- | --- | --- | --- | --- | --- | --- | --- | --- | --- | --- | --- | --- | --- | --- | --- | --- |
|  | 2 | **Concrete Manholes for 1000x1000 Box Pipes** |  | 2026-03-02 | 2026-12-14 |  |  |  |  |  |  |  |  |  |  |  |
| MOD-RWN-MH-94 |  | Excavation Concrete Manhole 1x1 for Rainwater Drainage Network Zone 2 | 4d | 2026-03-02 A | 2026-11-15 | MOD-RWN-PC-64 SS, A1600 | 68% | 1.28d | 2026-06-10 | 2026-06-14 | -119.99d | 0d | Contract Price Original Scope [13777.8]; Excavator Operator [2.77 h]; Laborer [5.54 h] | 13,777.76 | 9,368.87 | RW |
| MOD-RWN-MH-104 |  | Base slab and wall shuttering Concrete Manhole 1x1 for Rainwater Drainage Network Zone 2 | 2d | 2026-11-15 | 2026-11-17 | MOD-RWN-MH-94 |  |  |  |  | -119.99d | 0d | Contract Price Original Scope [120063]; Carpenter [32 h]; Laborer [16 h] | 120,063.3 |  | RW |
| MOD-RWN-MH-114 |  | Wall reinforcement and casting Concrete Manhole 1x1 for Rainwater Drainage Network Zone 2 | 5d | 2026-11-17 | 2026-11-23 | MOD-RWN-MH-104 |  |  |  |  | -119.99d | 0d | Contract Price Original Scope [118095]; Carpenter [28 h]; Laborer [56 h] | 118,095.04 |  | RW |
| MOD-RWN-MH-124 |  | Roof slab with openings Concrete Manhole 1x1 for Rainwater Drainage Network Zone 2 | 6d | 2026-11-23 | 2026-11-30 | MOD-RWN-MH-114 |  |  |  |  | -119.99d | 0d | Contract Price Original Scope [98412.5]; Boom Truck Operator [48 h]; Laborer [96 h] | 98,412.54 |  | RW |
| MOD-RWN-MH-134 |  | Masonry/benching works inside Concrete Manhole 1x1 for Rainwater Drainage Network Zone 2 | 5d | 2026-11-30 | 2026-12-06 | MOD-RWN-MH-124 |  |  |  |  | -119.99d | 0d | Contract Price Original Scope [29523.8]; Carpenter [52 h]; Laborer [52 h] | 29,523.76 |  | RW |
| MOD-RWN-MH-144 |  | Install cover and frame Concrete Manhole 1x1 for Rainwater Drainage Network Zone 2 | 4d | 2026-12-06 | 2026-12-10 | MOD-RWN-MH-134, A102580 |  |  |  |  | -119.99d | 0d | Contract Price Original Scope [7873]; Boom Truck Operator [16 h]; Laborer [32 h] | 7,873 |  | RW |
| MOD-RWN-MH-154 |  | Backfill in layers Concrete Manhole 1x1 for Rainwater Drainage Network Zone 2 | 3d | 2026-12-10 | 2026-12-14 | MOD-RWN-MH-144, MOD-GEI-PL-001 |  |  |  |  | -119.99d | 0d | Contract Price Original Scope [5904.75]; Excavator Operator [12 h]; Compactor Operator [12 h]; Laborer [24 h] | 5,904.75 |  | RW |
|  | 2 | **Chambers and Catch Basins** |  | 2025-10-15 | 2026-06-25 |  |  |  |  |  |  |  |  |  |  |  |
|  | 1 | **Gully Outfalls** |  | 2025-10-15 | 2026-06-25 |  |  |  |  |  |  |  |  |  |  |  |
| MOD-RWN-CC-18 |  | Identify discharge zones Gully Outfall for Rainwater Drainage Network Zone 2 | 4d | 2025-10-15 A | 2026-02-10 A | MOD-RWN-PC-64 SS | 100% |  | 2026-05-06 | 2026-05-11 |  |  | Contract Price Original Scope [8953.28]; Laborer [16 h] | 8,953.28 | 8,953.28 | RW |
| MOD-RWN-CC-28 |  | Excavate outfall channel Gully Outfall for Rainwater Drainage Network Zone 2 | 6d | 2025-12-22 A | 2026-02-16 A | MOD-RWN-CC-18 | 100% |  | 2026-03-28 | 2026-04-04 |  |  | Contract Price Original Scope [50138.3]; Excavator Operator [36 h]; Laborer [72 h] | 50,138.35 | 50,138.35 | RW |
| MOD-RWN-CC-38 |  | Place concrete apron or pipes Gully Outfall for Rainwater Drainage Network Zone 2 | 11d | 2026-01-01 A | 2026-06-24 A | MOD-RWN-CC-28 | 100% |  | 2026-03-29 | 2026-04-11 |  |  | Contract Price Original Scope [236367]; Carpenter [92 h]; Laborer [184.01 h] | 236,366.52 | 236,366.52 | RW |
| MOD-RWN-CC-48 |  | Provide slope protection (riprap) Gully Outfall for Rainwater Drainage Network Zone 2 | 6d | 2026-02-01 A | 2026-06-25 A | MOD-RWN-CC-38 | 100% |  | 2026-05-19 | 2026-05-26 |  |  | Contract Price Original Scope [26859.8]; Laborer [96 h]; Dump Truck Operator [48 h] | 26,859.83 | 26,859.83 | RW |
| MOD-RWN-CC-58 |  | Compact and shape terrain Gully Outfall for Rainwater Drainage Network Zone 2 | 4d | 2026-06-17 A | 2026-06-22 A | MOD-RWN-CC-48 | 100% |  | 2026-07-05 | 2026-07-09 |  |  | Contract Price Original Scope [35813.1]; Boom Truck Operator [24 h]; Laborer [24 h] | 35,813.11 | 35,813.11 | RW |
|  | 2 | **Rainwater Catch Basins** |  | 2025-12-29 | 2026-06-25 |  |  |  |  |  |  |  |  |  |  |  |
| MOD-RWN-CC-68 |  | Excavate pit area Catch Basin for Rainwater Drainage Network Zone 2 | 6d | 2025-12-29 A | 2026-01-03 A | MOD-RWN-PC-64 SS | 100% |  | 2026-03-18 | 2026-03-30 |  |  | Contract Price Original Scope [13040.1]; Excavator Operator [24 h]; Laborer [48 h] | 13,040.13 | 13,040.13 | RW |
| MOD-RWN-CC-78 |  | Lay bedding and place chamber Catch Basin for Rainwater Drainage Network Zone 2 | 4d | 2026-01-18 A | 2026-06-22 A | MOD-RWN-CC-68 | 100% |  | 2026-04-06 | 2026-04-11 |  |  | Contract Price Original Scope [73024.7]; Boom Truck Operator [48 h]; Laborer [96 h] | 73,024.71 | 73,024.71 | RW |
| MOD-RWN-CC-88 |  | Connect lateral inlet pipe Catch Basin for Rainwater Drainage Network Zone 2 | 8d | 2026-02-01 A | 2026-06-23 A | MOD-RWN-CC-78 | 100% |  | 2026-05-10 | 2026-05-19 |  |  | Contract Price Original Scope [344259]; Carpenter [16 h]; Laborer [16 h] | 344,259.36 | 344,259.36 | RW |
| MOD-RWN-CC-98 |  | Cover with grating Catch Basin for Rainwater Drainage Network Zone 2 | 5d | 2026-02-15 A | 2026-06-24 A | MOD-RWN-CC-88 | 100% |  | 2026-05-20 | 2026-05-26 |  |  | Contract Price Original Scope [39120.4]; Boom Truck Operator [20 h]; Laborer [20 h] | 39,120.38 | 39,120.38 | RW |
| MOD-RWN-CC-108 |  | Backfill and surface finish Catch Basin for Rainwater Drainage Network Zone 2 | 2d | 2026-06-23 A | 2026-06-25 A | MOD-RWN-CC-98, MOD-GEI-PL-001 | 100% |  | 2026-07-07 | 2026-07-09 |  |  | Contract Price Original Scope [52160.5]; Excavator Operator [8 h]; Compactor Operator [8 h]; Laborer [16 h] | 52,160.51 | 52,160.51 | RW |
|  | 3 | **Precast Chambers for Absorption Pits** |  | 2025-12-30 | 2026-04-06 |  |  |  |  |  |  |  |  |  |  |  |
| MOD-RWN-CC-118 |  | Excavate pit area Absorption Pit for Rainwater Drainage Network Zone 2 | 5d | 2025-12-30 A | 2026-02-09 A | MOD-RWN-PC-64 SS | 100% |  | 2026-03-18 | 2026-03-29 |  |  | Contract Price Original Scope [33620]; Excavator Operator [16.3 h]; Laborer [32.6 h] | 33,619.97 | 33,619.97 | RW |
| MOD-RWN-CC-128 |  | Install base slab and precast chamber Absorption Pit for Rainwater Drainage Network Zone 2 | 6d | 2026-01-01 A | 2026-02-16 A | MOD-RWN-CC-118 | 100% |  | 2026-03-29 | 2026-04-05 |  |  | Contract Price Original Scope [151290]; Boom Truck Operator [84.01 h]; Laborer [168.02 h] | 151,289.86 | 151,289.86 | RW |
| MOD-RWN-CC-138 |  | Connect outlet/inlet piping Absorption Pit for Rainwater Drainage Network Zone 2 | 9d | 2026-01-28 A | 2026-03-01 A | MOD-RWN-CC-128 FS+0.9d | 100% |  | 2026-05-16 | 2026-05-26 |  |  | Contract Price Original Scope [67239.9]; Carpenter [20 h]; Laborer [20 h] | 67,239.94 | 67,239.94 | RW |
| MOD-RWN-CC-148 |  | Waterproofing and protection Absorption Pit for Rainwater Drainage Network Zone 2 | 6d | 2026-03-03 A | 2026-03-16 A | MOD-RWN-CC-138 | 100% |  | 2026-06-10 | 2026-06-16 |  |  | Contract Price Original Scope [50429.9]; Carpenter [24 h]; Laborer [24 h] | 50,429.95 | 50,429.95 | RW |
| MOD-RWN-CC-158 |  | Backfill and compact Absorption Pit for Rainwater Drainage Network Zone 2 | 5d | 2026-03-24 A | 2026-04-06 A | MOD-RWN-CC-148, MOD-GEI-PL-001 | 100% |  | 2026-06-17 | 2026-06-22 |  |  | Contract Price Original Scope [33620]; Excavator Operator [20 h]; Compactor Operator [20 h]; Laborer [40 h] | 33,619.97 | 33,619.97 | RW |

| ID | WBS | Activity | Duration | Start | Finish | Predecessors | Complete | Remaining | Planned start | Planned finish | Total float | Free float | Resources | Cost | Actual cost | MOD-2937 |
| --- | --- | --- | --- | --- | --- | --- | --- | --- | --- | --- | --- | --- | --- | --- | --- | --- |
|  | 3 | **Gully Outfalls to Swales** |  | 2026-02-01 | 2026-11-29 |  |  |  |  |  |  |  |  |  |  |  |
|  | 1 | **Gully Outfalls to Swales** |  | 2026-02-01 | 2026-11-18 |  |  |  |  |  |  |  |  |  |  |  |
| MOD-RWN-GO-11 |  | Identify swale discharge zones Gully Outfall to Swales for Rainwater Drainage Network Zone 2 | 3d | 2026-02-01 A | 2026-02-28 A | MOD-RWN-CC-88 SS | 100% |  | 2026-05-10 | 2026-05-13 |  |  | Contract Price Original Scope [28303.7]; Laborer [20 h]; Surveyor [20 h] | 28,303.72 | 28,303.72 | RW |
| MOD-RWN-GO-21 |  | Excavate outfall channel Gully Outfall to Swales for Rainwater Drainage Network Zone 2 | 5d | 2026-02-07 A | 2026-11-14 | MOD-RWN-GO-11 | 95% | 0.25d | 2026-05-13 | 2026-05-19 | -97.61d | 0d | Contract Price Original Scope [56607.4]; Excavator Operator [45.05 h]; Laborer [90.1 h] | 56,607.45 | 53,777.07 | RW |
| MOD-RWN-GO-31 |  | Place concrete apron or pipes Gully Outfall to Swales for Rainwater Drainage Network Zone 2 | 7d | 2026-02-15 A | 2026-11-15 | MOD-RWN-GO-21 | 95% | 0.35d | 2026-02-15 | 2026-02-28 | -97.61d | 0d | Contract Price Original Scope [127367]; Carpenter [115.13 h]; Laborer [230.26 h] | 127,366.76 | 120,998.42 | RW |
| MOD-RWN-GO-41 |  | Provide slope protection (riprap) Gully Outfall to Swales for Rainwater Drainage Network Zone 2 | 4d | 2026-02-20 A | 2026-11-15 | MOD-RWN-GO-31 | 90% | 0.4d | 2026-06-06 | 2026-06-10 | -97.61d | 0d | Contract Price Original Scope [42455.6]; Laborer [120.13 h]; Dump Truck Operator [60.06 h] | 42,455.59 | 38,210.03 | RW |
| MOD-RWN-GO-51 |  | Compact and shape terrain Gully Outfall to Swales for Rainwater Drainage Network Zone 2 | 2d | 2026-11-16 | 2026-11-18 | MOD-RWN-GO-41 FS+0.9d |  |  |  |  | -97.61d | 22.38d | Contract Price Original Scope [28303.7]; Boom Truck Operator [30.03 h]; Laborer [30.03 h] | 28,303.72 |  | RW |
|  | 2 | **Riprap Works & Protection** |  | 2026-02-01 | 2026-11-29 |  |  |  |  |  |  |  |  |  |  |  |
| MOD-RWN-GO-61 |  | Lay filter fabric/membrane for Rainwater Drainage Network Zone 2 | 3d | 2026-02-01 A | 2026-11-15 | MOD-RWN-CC-88 SS | 60% | 1.2d | 2026-05-23 | 2026-05-26 | -106.41d | 0d | Contract Price Original Scope [7075.93]; Laborer [60.06 h] | 7,075.93 | 4,245.56 | RW |
| MOD-RWN-GO-71 |  | Place riprap/stone layer for Rainwater Drainage Network Zone 2 | 7d | 2026-02-17 A | 2026-11-19 | MOD-RWN-GO-61 | 50% | 3.5d | 2026-05-26 | 2026-06-08 | -106.41d | 0d | Contract Price Original Scope [38917.6]; Laborer [322.58 h]; Dump Truck Operator [161.29 h] | 38,917.62 | 19,458.81 | RW |
| MOD-RWN-GO-81 |  | Compact edges for Rainwater Drainage Network Zone 2 | 5d | 2026-11-19 | 2026-11-25 | MOD-RWN-GO-71 |  |  |  |  | -106.41d | 0d | Contract Price Original Scope [14151.9]; Compactor Operator [59.88 h]; Laborer [59.88 h] | 14,151.86 |  | RW |
| MOD-RWN-GO-91 |  | Ensure hydraulic flow direction for Rainwater Drainage Network Zone 2 | 3d | 2026-11-25 | 2026-11-29 | MOD-RWN-GO-81 |  |  |  |  | -106.41d | 13.58d | Contract Price Original Scope [10613.9]; Laborer [50 h]; Surveyor [50 h] | 10,613.9 |  | RW |
|  | 6 | **Backfilling & Bedding** |  | 2025-12-01 | 2026-11-16 |  |  |  |  |  |  |  |  |  |  |  |
|  | 1 | **Backfilling Materials (Type A – 201–700mm Pipes)** |  | 2026-01-05 | 2026-08-22 |  |  |  |  |  |  |  |  |  |  |  |
| MOD-RWN-BB-12 |  | Place granular bedding under pipe for Rainwater Drainage Network Zone 2 | 6d | 2026-01-05 A | 2026-08-22 A | MOD-RWN-PC-34 SS | 100% |  | 2026-02-15 | 2026-02-26 |  |  | Contract Price Original Scope [306676]; Excavator Operator [21.82 h]; Laborer [43.64 h] | 306,675.71 | 306,675.71 | RW |
| MOD-RWN-BB-22 |  | Lay and align pipe for Rainwater Drainage Network Zone 2 | 21d | 2026-01-12 A | 2026-08-22 A | MOD-RWN-BB-12 | 100% |  | 2026-02-26 | 2026-04-05 |  |  | Contract Price Original Scope [1380041]; Pipefitter [203.64 h]; Laborer [101.82 h] | 1,380,040.69 | 1,380,040.69 | RW |
| MOD-RWN-BB-32 |  | Backfill up to spring line for Rainwater Drainage Network Zone 2 | 13d | 2026-01-21 A | 2026-08-22 A | MOD-RWN-BB-22, MOD-GEI-PL-001 | 100% |  | 2026-04-05 | 2026-04-20 |  |  | Contract Price Original Scope [613351]; Compactor Operator [129.87 h]; Laborer [259.74 h] | 613,351.42 | 613,351.42 | RW |
| MOD-RWN-BB-42 |  | Compact layer-wise for Rainwater Drainage Network Zone 2 | 9d | 2026-02-01 A | 2026-08-22 A | MOD-RWN-BB-32 | 100% |  | 2026-05-16 | 2026-05-26 |  |  | Contract Price Original Scope [460014]; Compactor Operator [90.09 h]; Laborer [90.09 h] | 460,013.56 | 460,013.56 | RW |
| MOD-RWN-BB-52 |  | Final fill to subgrade level for Rainwater Drainage Network Zone 2 | 6d | 2026-08-01 A | 2026-08-22 A | MOD-RWN-BB-42 | 100% |  | 2026-08-22 | 2026-08-29 |  |  | Contract Price Original Scope [306676]; Excavator Operator [59.88 h]; Laborer [59.88 h] | 306,675.71 | 306,675.71 | RW |
|  | 2 | **Gravel Bedding & Filter Cloth for uPVC Drain Pipes** |  | 2025-12-01 | 2026-11-16 |  |  |  |  |  |  |  |  |  |  |  |
| MOD-RWN-BB-102 |  | Final fill and trench restoration for Rainwater Drainage Network Zone 2 | 8d | 2025-12-01 A | 2026-11-16 | MOD-RWN-BB-92 | 70% | 2.4d | 2026-04-15 | 2026-04-25 | -95.75d | 24.24d | Contract Price Original Scope [152963]; Excavator Operator [263.16 h]; Compactor Operator [263.16 h] | 152,963.36 | 107,074.35 | RW |
| MOD-RWN-BB-62 |  | Line trench with filter cloth for Rainwater Drainage Network Zone 2 | 6d | 2025-12-23 A | 2026-11-09 | MOD-RWN-PC-34 | 90% | 0.6d | 2026-02-19 | 2026-03-04 | -95.75d | 0d | Contract Price Original Scope [152963]; Laborer [225.45 h] | 152,963.36 | 137,667.02 | RW |
| MOD-RWN-BB-72 |  | Place and compact gravel bedding for Rainwater Drainage Network Zone 2 | 4d | 2026-01-03 A | 2026-11-09 | MOD-RWN-BB-62 | 88% | 0.48d | 2026-03-04 | 2026-03-12 | -95.75d | 0d | Contract Price Original Scope [305927]; Excavator Operator [47.27 h]; Laborer [94.55 h] | 305,926.71 | 269,215.51 | RW |
| MOD-RWN-BB-82 |  | Lay pipe within gravel zone for Rainwater Drainage Network Zone 2 | 9d | 2026-01-03 A | 2026-11-11 | MOD-RWN-BB-72 | 79% | 1.89d | 2026-03-12 | 2026-03-30 | -95.75d | 0d | Contract Price Original Scope [688335]; Pipefitter [281.69 h]; Laborer [140.85 h] | 688,335.11 | 543,784.73 | RW |
| MOD-RWN-BB-92 |  | Wrap filter cloth above pipe for Rainwater Drainage Network Zone 2 | 7d | 2026-01-03 A | 2026-11-14 | MOD-RWN-BB-82 | 74% | 1.82d | 2026-03-30 | 2026-04-07 | -95.75d | 0d | Contract Price Original Scope [229445]; Laborer [666.67 h] | 229,445.04 | 169,789.33 | RW |

| ID | WBS | Activity | Duration | Start | Finish | Predecessors | Complete | Remaining | Planned start | Planned finish | Total float | Free float | Calendar | Resources | Cost | Actual cost | MOD-2937 |
| --- | --- | --- | --- | --- | --- | --- | --- | --- | --- | --- | --- | --- | --- | --- | --- | --- | --- |
|  | 1 | **Potable Water Network Zone 2** |  | 2025-12-23 | 2026-12-23 |  |  |  |  |  |  |  |  |  |  |  |  |
|  | 1 | **Pipe Installation Works** |  | 2025-12-23 | 2026-11-08 |  |  |  |  |  |  |  |  |  |  |  |  |
| MOD-PWN-PI-143 |  | Trench Excavation for Potable Water Network Zone 2 | 21d | 2025-12-23 A | 2026-01-12 A | A102500, A102190 | 100% |  | 2026-01-10 | 2026-01-30 |  |  | 7-Day Workweek-9 | Contract Price Original Scope [400946] | 400,946.45 | 400,946.45 | PW |
| MOD-PWN-PI-153 |  | Lean Concrete / Pipe Bedding Preparation for Potable Water Network Zone 2 | 4d | 2026-01-01 A | 2026-11-07 | MOD-PWN-PI-143 | 97% | 0.12d | 2026-01-20 | 2026-01-24 | 53d | 0d | 7-Day Workweek-9 | Contract Price Original Scope [100237] | 100,236.61 | 97,229.51 | PW |
| MOD-PWN-PI-163 |  | HDPE Pipe Laying (200 mm to 710 mm) for Potable Water Network Zone 2 | 21d | 2026-01-04 A | 2026-11-07 | MOD-PWN-PI-153, A1650 | 97% | 0.63d | 2026-01-24 | 2026-02-14 | 53d | 0d | 7-Day Workweek-9 | Contract Price Original Scope [902130] | 902,129.52 | 875,065.63 | PW |
| MOD-PWN-PI-173 |  | Test (Pressure-slope) for Potable Water Network Zone 2 | 3d | 2026-01-05 A | 2026-11-07 | MOD-PWN-PI-163 | 95% | 0.15d | 2026-02-14 | 2026-02-17 | 53d | 0d | 7-Day Workweek-9 | Contract Price Original Scope [200473] | 200,473.23 | 190,449.56 | PW |
| MOD-PWN-PI-203 |  | Coating / Wrapping for Potable Water Network Zone 2 | 5d | 2026-02-15 A | 2026-11-08 | MOD-PWN-PI-173 | 95% | 0.25d | 2026-03-18 | 2026-03-23 | 53d | 0d | 7-Day Workweek-9 | Contract Price Original Scope [200473] | 200,473.23 | 190,449.56 | PW |
| MOD-PWN-PI-213 |  | Backfilling & Warrning Tape for Potable Water Network Zone 2 | 3d | 2026-02-23 A | 2026-11-08 | MOD-PWN-PI-203, MOD-PWN-PI-203 FF, MOD-GEI-PL-001 | 95% | 0.15d | 2026-02-23 | 2026-02-25 | 53d | 44.85d | 7-Day Workweek-9 | Contract Price Original Scope [200473] | 200,473.23 | 190,449.56 | PW |
|  | 2 | **Valve Installation & Chambers** |  | 2026-04-01 | 2026-11-12 |  |  |  |  |  |  |  |  |  |  |  |  |
| MOD-PWN-VC-37 |  | Valve Chamber Excavation for Potable Water Network Zone 2 | 12d | 2026-04-01 A | 2026-11-07 | MOD-PWN-PI-143 | 98% | 0.24d | 2026-06-01 | 2026-06-14 | 26.56d | 0d |  | Contract Price Original Scope [158152]; Excavator Operator [5 h]; Laborer [10 h] | 158,151.71 | 154,988.68 | PW |
| MOD-PWN-VC-47 |  | RC Slab, Walls, or Precast Chambers for Potable Water Network Zone 2 | 15d | 2026-04-07 A | 2026-11-07 | MOD-PWN-VC-37, A102760 | 96% | 0.6d | 2026-06-15 | 2026-07-01 | 42.08d | 0d |  | Contract Price Original Scope [126521]; Mason [540.54 h]; Laborer [810.81 h] | 126,521.37 | 121,460.51 | PW |
| MOD-PWN-VC-7 |  | Gate Valves (225–710 mm) for Potable Water Network Zone 2 | 12d | 2026-04-14 A | 2026-11-07 | A102750 | 96% | 0.48d | 2026-06-01 | 2026-06-14 | 42.44d | 0d |  | Contract Price Original Scope [94891]; Crane Operator [80 h]; Pipefitter [160 h] | 94,891.03 | 91,095.39 | PW |
| MOD-PWN-VC-17 |  | Butterfly Valves (355, 500, 630 mm) for Potable Water Network Zone 2 | 12d | 2026-04-18 A | 2026-11-07 | MOD-PWN-VC-7 SS, A102750 | 96% | 0.48d | 2026-06-01 | 2026-06-14 | 42.44d | 0d |  | Contract Price Original Scope [75912.8]; Crane Operator [64 h]; Pipefitter [127.99 h] | 75,912.82 | 72,876.31 | PW |
| MOD-PWN-VC-27 |  | 3-exit (2 x 2.5-inch and 1 x 4-inch) dry vacuum cylinder detachable fire nozzle for Potable Water Network Zone 2 | 12d | 2026-04-22 A | 2026-11-07 | MOD-PWN-VC-17 SS | 96% | 0.48d | 2026-06-01 | 2026-06-14 | 42.44d | 0.36d |  | Contract Price Original Scope [82238.9]; Pipefitter [135.99 h]; Welder [68 h] | 82,238.89 | 78,949.33 | PW |
| MOD-PWN-VC-57 |  | Fixing Covers, Gratings, Frames for Potable Water Network Zone 2 | 6d | 2026-08-05 A | 2026-11-08 | MOD-PWN-VC-47, MOD-PWN-VC-27 | 92% | 0.48d | 2026-10-17 | 2026-10-24 | 42.08d | 0d |  | Contract Price Original Scope [63260.7]; Laborer [259.74 h]; Welder [129.87 h] | 63,260.68 | 58,199.83 | PW |
| MOD-PWN-VC-67 |  | Tagging & Painting for Potable Water Network Zone 2 | 4d | 2026-11-08 | 2026-11-12 | MOD-PWN-VC-57 |  |  |  |  | 42.08d | 34.93d |  | Contract Price Original Scope [31630.3]; Painter [59.88 h]; Laborer [59.88 h] | 31,630.34 |  | PW |
|  | 3 | **Flow Meter Installation** |  | 2026-08-30 | 2026-12-23 |  |  |  |  |  |  |  |  |  |  |  |  |
| MOD-PWN-FM-5 |  | Chamber Excavation (280 mm, 300 mm, 500 mm, 800 mm) for Potable Water Network Zone 2 | 8d | 2026-08-30 A | 2026-11-08 | MOD-PWN-VC-37 | 90% | 0.8d | 2026-08-30 | 2026-09-08 | 26.56d | 0d |  | Contract Price Original Scope [36921.7]; Excavator Operator [5 h]; Laborer [5 h] | 36,921.69 | 33,229.53 | PW |
| MOD-PWN-FM-15 |  | RC or Precast Chamber Construction for Potable Water Network Zone 2 | 7d | 2026-09-01 A | 2026-11-10 | MOD-PWN-FM-5, A102760 | 60% | 2.8d | 2026-09-13 | 2026-09-21 | 26.56d | 19.41d |  | Contract Price Original Scope [18460.8]; Mason [10 h]; Laborer [10 h] | 18,460.85 | 11,076.51 | PW |
| MOD-PWN-FM-25 |  | Flowmeter Installation & Pipe Integration for Potable Water Network Zone 2 | 12d | 2026-09-06 A | 2026-12-10 | MOD-PWN-FM-15, A102620 | 50% | 6d | 2026-11-05 | 2026-11-19 | 7.15d | 0d |  | Contract Price Original Scope [43075.3]; Pipefitter [144.1 h]; Technician [72.05 h] | 43,075.31 | 21,537.66 | PW |
| MOD-PWN-FM-35 |  | Wiring/Cabling if applicable for Potable Water Network Zone 2 | 8d | 2026-12-10 | 2026-12-20 | MOD-PWN-FM-25 |  |  |  |  | 7.15d | 0d |  | Contract Price Original Scope [18460.8] | 18,460.85 |  | PW |
| MOD-PWN-FM-45 |  | Calibration & Commissioning for Potable Water Network Zone 2 | 3d | 2026-12-20 | 2026-12-23 | MOD-PWN-FM-35 |  |  |  |  | 7.15d | 0d |  | Contract Price Original Scope [6153.62]; Technician [10 h]; Electrician [10 h] | 6,153.62 |  | PW |
|  | 4 | **Washout & Air Valve Chambers** |  | 2026-05-01 | 2026-11-12 |  |  |  |  |  |  |  |  |  |  |  |  |
| MOD-PWN-WA-7 |  | Chamber Excavation (280 mm to 710 mm) for Potable Water Network Zone 2 | 12d | 2026-05-01 A | 2026-08-30 A | MOD-PWN-VC-37 SS | 100% |  | 2026-06-01 | 2026-06-14 |  |  |  | Contract Price Original Scope [77872.4]; Excavator Operator [5 h]; Laborer [5 h] | 77,872.36 | 77,872.36 | PW |
| MOD-PWN-WA-17 |  | RC Blinding + Base + Walls for Potable Water Network Zone 2 | 5d | 2026-05-05 A | 2026-08-30 A | MOD-PWN-WA-7 | 100% |  | 2026-06-15 | 2026-06-20 |  |  |  | Contract Price Original Scope [58404.3]; Mason [180.18 h]; Laborer [270.27 h] | 58,404.27 | 58,404.27 | PW |
| MOD-PWN-WA-27 |  | Pipe Work for Potable Water Network Zone 2 | 14d | 2026-05-13 A | 2026-11-08 | MOD-PWN-WA-17, A102740, A1650 | 91% | 1.26d | 2026-06-21 | 2026-07-06 | 42.1d | 0d |  | Contract Price Original Scope [175213]; Pipefitter [216 h]; Laborer [108 h] | 175,212.8 | 159,443.65 | PW |
| MOD-PWN-WA-37 |  | Washout (Valve + Outlet) Installation for Potable Water Network Zone 2 | 10d | 2026-05-17 A | 2026-11-08 | MOD-PWN-WA-27, A102750 | 93% | 0.7d | 2026-07-07 | 2026-07-18 | 42.1d | 0d |  | Contract Price Original Scope [129539]; Pipefitter [31.47 h]; Welder [15.74 h] | 129,538.51 | 120,470.81 | PW |
| MOD-PWN-WA-47 |  | Air Valve Rooms (Valve + Outlet) Installation for Potable Water Network Zone 2 | 5d | 2026-08-11 A | 2026-11-09 | MOD-PWN-WA-37, A102780 | 86% | 0.7d | 2026-09-19 | 2026-09-26 | 42.1d | 0d |  | Contract Price Original Scope [90150.2]; Pipefitter [22.32 h]; Plumber [11.16 h] | 90,150.2 | 77,529.17 | PW |
| MOD-PWN-WA-57 |  | Covers, Ladders & Tags for Potable Water Network Zone 2 | 4d | 2026-09-17 A | 2026-11-10 | MOD-PWN-WA-47 | 84% | 0.64d | 2026-09-17 | 2026-09-22 | 42.1d | 0d |  | Contract Price Original Scope [38936.2]; Laborer [59.88 h]; Welder [59.88 h] | 38,936.18 | 32,706.39 | PW |
| MOD-PWN-WA-67 |  | Backfilling & Final Finishing for Potable Water Network Zone 2 | 2d | 2026-11-10 | 2026-11-12 | MOD-PWN-WA-57, MOD-GEI-PL-001 |  |  |  |  | 42.1d | 34.95d |  | Contract Price Original Scope [38936.2] | 38,936.18 |  | PW |

| ID | WBS | Activity | Duration | Start | Finish | Predecessors | Complete | Remaining | Planned start | Planned finish | Total float | Free float | Calendar | Resources | Cost | Actual cost | MOD-2937 |
| --- | --- | --- | --- | --- | --- | --- | --- | --- | --- | --- | --- | --- | --- | --- | --- | --- | --- |
|  | 2 | **Irrigation Network Zone 2** |  | 2025-11-20 | 2026-12-10 |  |  |  |  |  |  |  |  |  |  |  |  |
|  | 1 | **Excavation, Pipe Laying & Backfilling** |  | 2025-11-20 | 2026-11-09 |  |  |  |  |  |  |  |  |  |  |  |  |
| MOD-IRN-EB-330 |  | Trench Excavation for Irrigation Network Zone 2 | 21d | 2025-11-20 A | 2026-08-29 A | A102500, A102190 | 100% |  | 2026-01-03 | 2026-01-24 |  |  | 7-Day Workweek-9 | Contract Price Original Scope [218514]; Excavator Operator [344.83 h]; Laborer [689.66 h] | 218,513.8 | 218,513.8 | IR |
| MOD-IRN-EB-340 |  | Lean Concrete / Pipe Bedding with Type B Material for Irrigation Network Zone 2 | 9d | 2025-12-01 A | 2026-11-07 | MOD-IRN-EB-330 | 97% | 0.27d | 2026-01-24 | 2026-02-02 | 52.2d | 0d | 7-Day Workweek-9 | Contract Price Original Scope [54628.4]; Laborer [160 h] | 54,628.45 | 52,989.6 | IR |
| MOD-IRN-EB-350 |  | HDPE Pipe Laying (125 mm to 630 mm) for Irrigation Network Zone 2 | 21d | 2026-01-01 A | 2026-11-07 | MOD-IRN-EB-340, A1650 | 97% | 0.63d | 2026-02-05 | 2026-02-26 | 52.2d | 0d | 7-Day Workweek-9 | Contract Price Original Scope [491656]; Pipefitter [2196.86 h]; Laborer [4393.72 h]; Welder [2196.86 h] | 491,656.05 | 476,906.37 | IR |
| MOD-IRN-EB-360 |  | Test (Pressure-slope) for Irrigation Network Zone 2 | 2d | 2026-01-06 A | 2026-11-08 | MOD-IRN-EB-350 | 90% | 0.2d | 2026-02-11 | 2026-02-13 | 52.2d | 0d | 7-Day Workweek-9 | Contract Price Original Scope [109257]; Pipefitter [10 h]; Technician [10 h] | 109,256.9 | 98,331.21 | IR |
| MOD-IRN-EB-370 |  | Coating / Wrapping for Irrigation Network Zone 2 | 2d | 2026-02-20 A | 2026-11-08 | MOD-IRN-EB-360 | 90% | 0.2d | 2026-05-01 | 2026-05-03 | 52.2d | 0d | 7-Day Workweek-9 | Contract Price Original Scope [109257]; Laborer [40 h] | 109,256.9 | 98,331.21 | IR |
| MOD-IRN-EB-380 |  | Backfilling & Warrning Tape for Irrigation Network Zone 2 | 2d | 2026-02-28 A | 2026-11-09 | MOD-IRN-EB-370, MOD-IRN-EB-370 FF, MOD-GEI-PL-001 | 60% | 0.8d | 2026-05-03 | 2026-05-05 | 52.2d | 30.95d | 7-Day Workweek-9 | Contract Price Original Scope [109257]; Compactor Operator [0.02 h]; Laborer [0.04 h] | 109,256.9 | 65,554.14 | IR |
|  | 2 | **Valves and Appurtenances** |  | 2026-02-05 | 2026-11-09 |  |  |  |  |  |  |  |  |  |  |  |  |
| MOD-IRN-VA-5 |  | Supply & Installation of Valves (Gate Valve) for Irrigation Network Zone 2 | 8d | 2026-02-05 A | 2026-11-07 | A102750 | 90% | 0.8d | 2026-04-25 | 2026-05-04 | 40.2d | 0d |  | Contract Price Original Scope [78843.6]; Crane Operator [201 h]; Pipefitter [402 h] | 78,843.59 | 70,959.23 | IR |
| MOD-IRN-VA-15 |  | Supply & Installation of Valves (Butterfly Valve) for Irrigation Network Zone 2 | 8d | 2026-02-27 A | 2026-11-07 | MOD-IRN-VA-5 SS+4d, A102750 | 90% | 0.8d | 2026-05-16 | 2026-05-24 | 40.2d | 0d |  | Contract Price Original Scope [35634.3]; Crane Operator [10.2 h]; Pipefitter [20.4 h] | 35,634.32 | 32,070.89 | IR |
| MOD-IRN-VA-25 |  | Installation of Flanges, Bolts, Collars, Nuts for Irrigation Network Zone 2 | 4d | 2026-02-28 A | 2026-11-08 | MOD-IRN-VA-15 | 85% | 0.6d | 2026-05-25 | 2026-06-02 | 40.2d | 0d |  | Contract Price Original Scope [5087.91]; Pipefitter [60.06 h] | 5,087.91 | 4,324.72 | IR |
| MOD-IRN-VA-35 |  | Valve Pressure Testing for Irrigation Network Zone 2 | 2d | 2026-07-04 A | 2026-11-08 | MOD-IRN-VA-25 | 70% | 0.6d | 2026-07-14 | 2026-07-16 | 44.7d | 0d |  | Contract Price Original Scope [3179.94]; Pipefitter [10 h]; Technician [10 h] | 3,179.94 | 2,225.96 | IR |
| MOD-IRN-VA-45 |  | Support Brackets/Anchor Blocks for Irrigation Network Zone 2 | 2d | 2026-07-07 A | 2026-11-09 | MOD-IRN-VA-35 | 65% | 0.7d | 2026-07-16 | 2026-07-19 | 44.7d | 26.45d |  | Contract Price Original Scope [4451.92]; Laborer [40 h]; Welder [20 h] | 4,451.92 | 2,893.75 | IR |
|  | 3 | **Valve Rooms** |  | 2026-01-30 | 2026-11-08 |  |  |  |  |  |  |  |  |  |  |  |  |
| MOD-IRN-VR-7 |  | Excavation for Valve Room Valve Chamber for Irrigation Network Zone 2 | 4d | 2026-01-30 A | 2026-06-01 A | MOD-IRN-VA-25 SS, A1600 | 100% |  | 2026-04-30 | 2026-05-05 |  |  |  | Contract Price Original Scope [18044.4] | 18,044.41 | 18,044.41 | IR |
| MOD-IRN-VR-17 |  | Blinding Concrete Valve Chamber for Irrigation Network Zone 2 | 2d | 2026-02-01 A | 2026-06-30 A | MOD-IRN-VR-7, A103770 | 100% |  | 2026-05-05 | 2026-05-07 |  |  |  | Contract Price Original Scope [12029.6]; Laborer [60.06 h] | 12,029.61 | 12,029.61 | IR |
| MOD-IRN-VR-27 |  | RCC Base Slab & Chamber Walls Valve Chamber for Irrigation Network Zone 2 | 4d | 2026-02-02 A | 2026-07-01 A | MOD-IRN-VR-17, A102760 | 100% |  | 2026-05-07 | 2026-05-12 |  |  |  | Contract Price Original Scope [14435.5]; Mason [100 h]; Laborer [150 h] | 14,435.53 | 14,435.53 | IR |
| MOD-IRN-VR-37 |  | Block Wall Construction (if any) Valve Chamber for Irrigation Network Zone 2 | 5d | 2026-03-04 A | 2026-07-02 A | MOD-IRN-VR-27 | 100% |  | 2026-05-12 | 2026-05-18 |  |  |  | Contract Price Original Scope [21653.3]; Mason [139.86 h]; Laborer [139.86 h] | 21,653.29 | 21,653.29 | IR |
| MOD-IRN-VR-47 |  | Installation of Valve inside the Room Valve Chamber for Irrigation Network Zone 2 | 5d | 2026-07-01 A | 2026-07-08 A | MOD-IRN-VR-37 | 100% |  | 2026-07-11 | 2026-07-16 |  |  |  | Contract Price Original Scope [30074]; Pipefitter [4 h] | 30,074.02 | 30,074.02 | IR |
| MOD-IRN-VR-57 |  | Fixing Frame & Cover Valve Chamber for Irrigation Network Zone 2 | 2d | 2026-07-02 A | 2026-07-09 A | MOD-IRN-VR-47 | 100% |  | 2026-07-16 | 2026-07-19 |  |  |  | Contract Price Original Scope [18044.4]; Laborer [40 h]; Welder [40 h] | 18,044.41 | 18,044.41 | IR |
| MOD-IRN-VR-67 |  | Backfilling and Finishing Valve Chamber for Irrigation Network Zone 2 | 3d | 2026-07-13 A | 2026-11-08 | MOD-IRN-VR-57, MOD-GEI-PL-001 | 80% | 0.6d | 2026-07-13 | 2026-07-16 | 46d | 27.75d |  | Contract Price Original Scope [6014.8] | 6,014.8 | 4,811.84 | IR |
|  | 4 | **Washout Chambers** |  | 2026-04-18 | 2026-11-08 |  |  |  |  |  |  |  |  |  |  |  |  |
| MOD-IRN-WC-6 |  | Excavation for Chamber Washout Chamber for Irrigation Network Zone 2 | 5d | 2026-04-18 A | 2026-05-31 A | MOD-IRN-VA-25 SS, A1600 | 100% |  | 2026-06-15 | 2026-06-21 |  |  |  | Contract Price Original Scope [28122.7]; Excavator Operator [5 h]; Laborer [5 h] | 28,122.71 | 28,122.71 | IR |
| MOD-IRN-WC-16 |  | Blinding Concrete Washout Chamber for Irrigation Network Zone 2 | 3d | 2026-04-19 A | 2026-06-17 A | MOD-IRN-WC-6, A103770 | 100% |  | 2026-06-21 | 2026-06-24 |  |  |  | Contract Price Original Scope [14061.4]; Laborer [60.06 h] | 14,061.36 | 14,061.36 | IR |
| MOD-IRN-WC-26 |  | Construction of RCC Base & Chamber Wall Washout Chamber for Irrigation Network Zone 2 | 7d | 2026-04-21 A | 2026-06-23 A | MOD-IRN-WC-16 | 100% |  | 2026-06-24 | 2026-07-02 |  |  |  | Contract Price Original Scope [21092]; Mason [10 h]; Laborer [15 h] | 21,092.04 | 21,092.04 | IR |
| MOD-IRN-WC-36 |  | Washout Valve & Pipe Connection Washout Chamber for Irrigation Network Zone 2 | 5d | 2026-04-22 A | 2026-06-24 A | MOD-IRN-WC-26, A102750 | 100% |  | 2026-07-02 | 2026-07-08 |  |  |  | Contract Price Original Scope [49214.8]; Pipefitter [88.02 h] | 49,214.75 | 49,214.75 | IR |
| MOD-IRN-WC-46 |  | Manhole Frame, Cover & Ladder Fixing Washout Chamber for Irrigation Network Zone 2 | 3d | 2026-06-22 A | 2026-11-07 | MOD-IRN-WC-36 | 95% | 0.15d | 2026-07-01 | 2026-07-05 | 46.35d | 0d |  | Contract Price Original Scope [21092]; Laborer [50 h]; Welder [50 h] | 21,092.04 | 20,037.43 | IR |
| MOD-IRN-WC-56 |  | Backfilling & Reinstatement Washout Chamber for Irrigation Network Zone 2 | 2d | 2026-07-05 A | 2026-11-08 | MOD-IRN-WC-46, MOD-GEI-PL-001 | 95% | 0.1d | 2026-07-15 | 2026-07-18 | 46.35d | 28.1d |  | Contract Price Original Scope [7030.68] | 7,030.68 | 6,679.14 | IR |

| ID | WBS | Activity | Duration | Start | Finish | Predecessors | Complete | Remaining | Planned start | Planned finish | Total float | Free float | Resources | Cost | Actual cost | MOD-2937 |
| --- | --- | --- | --- | --- | --- | --- | --- | --- | --- | --- | --- | --- | --- | --- | --- | --- |
|  | 5 | **Air Valve Chambers** |  | 2026-03-23 | 2026-07-28 |  |  |  |  |  |  |  |  |  |  |  |
| MOD-IRN-AC-15 |  | Blinding & RCC Base Air Valve Chamber for Irrigation Network Zone 2 | 4d | 2026-03-23 A | 2026-06-22 A | MOD-IRN-AC-5, A103770 | 100% |  | 2026-06-17 | 2026-06-22 |  |  | Contract Price Original Scope [9489.67]; Laborer [80 h] | 9,489.67 | 9,489.67 | IR |
| MOD-IRN-AC-5 |  | Chamber Excavation Air Valve Chamber for Irrigation Network Zone 2 | 4d | 2026-03-23 A | 2026-05-23 A | MOD-IRN-VA-25 | 100% |  | 2026-06-13 | 2026-06-17 |  |  | Contract Price Original Scope [18979.3]; Excavator Operator [5 h]; Laborer [5 h] | 18,979.34 | 18,979.34 | IR |
| MOD-IRN-AC-25 |  | Wall Casting / Blockwork Air Valve Chamber for Irrigation Network Zone 2 | 6d | 2026-03-25 A | 2026-06-23 A | MOD-IRN-AC-15 | 100% |  | 2026-06-22 | 2026-06-29 |  |  | Contract Price Original Scope [14234.5]; Mason [119.76 h]; Laborer [119.76 h] | 14,234.51 | 14,234.51 | IR |
| MOD-IRN-AC-35 |  | Air Valve Installation (280–630 mm) Air Valve Chamber for Irrigation Network Zone 2 | 5d | 2026-04-13 A | 2026-07-01 A | MOD-IRN-AC-25, A102780 | 100% |  | 2026-06-20 | 2026-06-25 |  |  | Contract Price Original Scope [37958.7]; Pipefitter [27.42 h] | 37,958.68 | 37,958.68 | IR |
| MOD-IRN-AC-45 |  | Cover Fixing & Finishing Air Valve Chamber for Irrigation Network Zone 2 | 2d | 2026-06-23 A | 2026-07-28 A | MOD-IRN-AC-35 | 100% |  | 2026-07-04 | 2026-07-06 |  |  | Contract Price Original Scope [14234.5]; Laborer [59.88 h] | 14,234.51 | 14,234.51 | IR |
|  | 6 | **Flow Meter Chambers** |  | 2026-04-01 | 2026-12-10 |  |  |  |  |  |  |  |  |  |  |  |
| MOD-IRN-FC-6 |  | Chamber Excavation Flow Meter Chamber for Irrigation Network Zone 2 | 6d | 2026-04-01 A | 2026-06-29 A | MOD-IRN-VA-25 SS | 100% |  | 2026-05-18 | 2026-05-24 |  |  | Contract Price Original Scope [17934.9]; Excavator Operator [5 h]; Laborer [5 h] | 17,934.92 | 17,934.92 | IR |
| MOD-IRN-FC-16 |  | RCC Base & Wall Construction Flow Meter Chamber for Irrigation Network Zone 2 | 5d | 2026-05-26 A | 2026-11-08 | MOD-IRN-FC-6, A102760 | 90% | 0.5d | 2026-06-15 | 2026-06-21 | 40.2d | 21.95d | Contract Price Original Scope [8967.46]; Mason [100 h]; Laborer [150 h] | 8,967.46 | 8,070.72 | IR |
| MOD-IRN-FC-26 |  | Flow Meter Installation (280, 300, 500 mm) Flow Meter Chamber for Irrigation Network Zone 2 | 5d | 2026-07-01 A | 2026-12-03 | MOD-IRN-FC-16, A102620 | 90% | 0.5d | 2026-08-18 | 2026-08-24 | 18.25d | 0d | Contract Price Original Scope [31386.1]; Pipefitter [104.05 h]; Technician [52.02 h] | 31,386.12 | 28,247.51 | IR |
| MOD-IRN-FC-36 |  | Integration with Pipework Flow Meter Chamber for Irrigation Network Zone 2 | 2d | 2026-07-02 A | 2026-12-05 | MOD-IRN-FC-26 | 80% | 0.4d | 2026-08-23 | 2026-08-25 | 18.25d | 0d | Contract Price Original Scope [13451.2]; Pipefitter [119.76 h] | 13,451.19 | 10,760.95 | IR |
| MOD-IRN-FC-46 |  | Testing & Calibration Flow Meter Chamber for Irrigation Network Zone 2 | 4d | 2026-07-22 A | 2026-12-07 | MOD-IRN-FC-36 | 50% | 2d | 2026-11-07 | 2026-11-11 | 18.25d | 0d | Contract Price Original Scope [13451.2]; Technician [10 h] | 13,451.19 | 6,725.6 | IR |
| MOD-IRN-FC-56 |  | Cover and Access Arrangement Flow Meter Chamber for Irrigation Network Zone 2 | 3d | 2026-12-07 | 2026-12-10 | MOD-IRN-FC-46 |  |  |  |  | 18.25d | 0d | Contract Price Original Scope [4483.73]; Laborer [20 h] | 4,483.73 |  | IR |
|  | 3 | **Rainwater Collection Ponds Zone 2** |  | 2025-10-27 | 2027-04-01 |  |  |  |  |  |  |  |  |  |  |  |
|  | 10 | **Excavation for Rainwater Drainage Pond** |  | 2026-05-01 | 2027-01-09 |  |  |  |  |  |  |  |  |  |  |  |
|  | 11 | **Deep excavation, backfill, disposal for pond formation** |  | 2026-05-01 | 2027-01-09 |  |  |  |  |  |  |  |  |  |  |  |
| MOD-RCP-ER-8 |  | Mark and fence pond boundary for Rainwater Collection Ponds Zone 2 | 3d | 2026-05-01 A | 2026-09-01 A | MIL-0006, MOD-GEI-SF-001 | 100% |  | 2026-11-07 | 2026-11-10 |  |  | Contract Price Original Scope [3946.42]; Laborer [10.01 h]; Surveyor [5.01 h] | 3,946.42 | 3,946.42 | PO |
| MOD-RCP-ER-18 |  | Excavate in layers to final depth for Rainwater Collection Ponds Zone 2 | 12d | 2026-06-08 A | 2027-01-02 | MOD-RCP-ER-8 | 90% | 1.2d | 2026-11-10 | 2026-11-24 | 92d | 0d | Contract Price Original Scope [34390.2]; Excavator Operator [36.36 h]; Laborer [54.55 h] | 34,390.2 | 30,951.18 | PO |
| MOD-RCP-ER-28 |  | Dewater during excavation for Rainwater Collection Ponds Zone 2 | 5d | 2026-07-07 A | 2027-01-03 | MOD-RCP-ER-18 | 90% | 0.5d | 2026-11-24 | 2026-11-30 | 92d | 0d | Contract Price Original Scope [33826.4] | 33,826.43 | 30,443.79 | PO |
| MOD-RCP-ER-38 |  | Place warning tapes for Rainwater Collection Ponds Zone 2 | 6d | 2026-07-21 A | 2027-01-03 | MOD-RCP-ER-28 | 90% | 0.6d | 2026-11-30 | 2026-12-07 | 92d | 0d | Contract Price Original Scope [8456.61]; Laborer [19.96 h] | 8,456.61 | 7,610.95 | PO |
| MOD-RCP-ER-48 |  | Dispose of rock/materials to approved dump area for Rainwater Collection Ponds Zone 2 | 7d | 2026-08-01 A | 2027-01-04 | MOD-RCP-ER-38 | 90% | 0.7d | 2026-11-12 | 2026-11-21 | 92d | 0d | Contract Price Original Scope [28188.7]; Laborer [21.21 h]; Dump Truck Operator [10.61 h] | 28,188.69 | 25,369.82 | PO |
| MOD-RCP-ER-58 |  | Backfill selected areas as per design for Rainwater Collection Ponds Zone 2 | 2d | 2027-01-04 | 2027-01-06 | MOD-RCP-ER-48, MOD-GEI-PL-001 |  |  |  |  | 92d | 0d | Contract Price Original Scope [2255.1]; Excavator Operator [3.33 h]; Laborer [6.67 h] | 2,255.1 |  | PO |
| MOD-RCP-ER-68 |  | Final trimming and profiling for Rainwater Collection Ponds Zone 2 | 2d | 2027-01-06 | 2027-01-09 | MOD-RCP-ER-58 |  |  |  |  | 92d | 223d | Contract Price Original Scope [1691.32]; Grader Operator [3.33 h]; Laborer [3.33 h] | 1,691.32 |  | PO |
|  | 1 | **General Site Preparation** |  | 2025-10-27 | 2026-09-08 |  |  |  |  |  |  |  |  |  |  |  |
| MOD-RCP-GS-83 |  | Earthwork excavation (other than topsoil or rock) - Zone 2 (2 Ponds) for Rainwater Collection Ponds Zone 2 | 21d | 2025-10-27 A | 2026-09-01 A | MOD-RCP-GS-53, MOD-RCP-GS-183 | 100% |  | 2026-05-25 | 2026-06-23 |  |  | Contract Price Original Scope [5126449]; Excavator Operator [2146.02 h]; Laborer [2146.02 h] | 5,126,449.25 | 5,126,449.25 | PO |
| MOD-RCP-GS-43 |  | Site demarcation for Rainwater Collection Ponds Zone 2 | 21d | 2025-10-29 A | 2025-11-04 A | MOD-RCP-ER-8 | 100% |  | 2026-05-04 | 2026-06-02 |  |  | Contract Price Original Scope [27674.2]; Laborer [20.85 h]; Surveyor [20.85 h] | 27,674.18 | 27,674.18 | PO |
| MOD-RCP-GS-53 |  | Clearing and grubbing for Rainwater Collection Ponds Zone 2 | 21d | 2025-10-30 A | 2025-11-08 A | MOD-RCP-GS-43 | 100% |  | 2026-05-04 | 2026-06-02 |  |  | Contract Price Original Scope [249068]; Excavator Operator [104.26 h]; Laborer [208.53 h] | 249,067.66 | 249,067.66 | PO |
| MOD-RCP-GS-93 |  | Transport and disposal to approved locations - Zone 2 (2 Ponds) for Rainwater Collection Ponds Zone 2 | 21d | 2025-11-24 A | 2026-09-08 A | MOD-RCP-GS-83 | 100% |  | 2026-06-24 | 2026-07-19 |  |  | Contract Price Original Scope [4317535]; Laborer [3753.82 h]; Dump Truck Operator [22523 h] | 4,317,535.04 | 4,317,535.04 | PO |

| ID | WBS | Activity | Duration | Start | Finish | Predecessors | Complete | Remaining | Planned start | Planned finish | Total float | Free float | Resources | Cost | Actual cost | MOD-2937 |
| --- | --- | --- | --- | --- | --- | --- | --- | --- | --- | --- | --- | --- | --- | --- | --- | --- |
|  | 2 | **Backfilling Works** |  | 2025-11-17 | 2027-01-16 |  |  |  |  |  |  |  |  |  |  |  |
| MOD-RCP-BW-15 |  | Place in layers not exceeding 300mm for Rainwater Collection Ponds Zone 2 | 21d | 2025-11-17 A | 2027-01-07 | MOD-RCP-BW-5 | 90% | 2.1d | 2026-07-29 | 2026-08-23 | 85.9d | 0d | Contract Price Original Scope [84453.3]; Paver Operator [45.05 h]; Laborer [90.09 h] | 84,453.34 | 76,008.01 | PO |
| MOD-RCP-BW-5 |  | Select material from excavation or import approved material for Rainwater Collection Ponds Zone 2 | 15d | 2025-11-18 A | 2027-01-05 | MOD-RCP-GS-93 | 90% | 1.5d | 2026-07-12 | 2026-07-29 | 36.8d | 0d | Contract Price Original Scope [48259.1] | 48,259.05 | 43,433.15 | PO |
| MOD-RCP-BW-25 |  | Compact each layer to required density for Rainwater Collection Ponds Zone 2 | 20d | 2025-11-25 A | 2027-01-10 | MOD-RCP-BW-15 | 90% | 2d | 2026-08-11 | 2026-09-03 | 85.9d | 0d | Contract Price Original Scope [60323.8]; Compactor Operator [33.33 h]; Laborer [33.33 h] | 60,323.82 | 54,291.44 | PO |
| MOD-RCP-BW-35 |  | Conduct field density tests for Rainwater Collection Ponds Zone 2 | 4d | 2026-08-01 A | 2027-01-10 | MOD-RCP-BW-25 | 90% | 0.4d | 2026-12-21 | 2026-12-26 | 85.9d | 0d | Contract Price Original Scope [36194.3]; Laborer [6.67 h]; Technician [6.67 h] | 36,194.29 | 32,574.86 | PO |
| MOD-RCP-BW-45 |  | Final leveling and approval for Rainwater Collection Ponds Zone 2 | 5d | 2027-01-10 | 2027-01-16 | MOD-RCP-BW-35 |  |  |  |  | 85.9d | 216.9d | Contract Price Original Scope [12064.8]; Grader Operator [8.33 h]; Surveyor [8.33 h] | 12,064.76 |  | PO |
|  | 12 | **Geotextile & Bedding** |  | 2026-01-04 | 2027-03-23 |  |  |  |  |  |  |  |  |  |  |  |
|  | 13 | **Installation of geotextile lining and coarse sand bedding** |  | 2026-01-04 | 2027-03-23 |  |  |  |  |  |  |  |  |  |  |  |
| MOD-RCP-GB-5 |  | Trim subgrade to required level for Rainwater Collection Ponds Zone 2 | 7d | 2026-01-04 A | 2026-01-21 A | MOD-RCP-BW-5 | 100% |  | 2026-08-16 | 2026-08-24 |  |  | Contract Price Original Scope [40941.1]; Grader Operator [11.66 h]; Laborer [11.66 h] | 40,941.14 | 40,941.14 | PO |
| MOD-RCP-GB-15 |  | Lay HDPE geotextile membrane over compacted soil for Rainwater Collection Ponds Zone 2 | 21d | 2026-01-17 A | 2027-01-19 | MOD-RCP-GB-5 | 40% | 12.6d | 2026-06-28 | 2026-07-22 | 36.8d | 0d | Contract Price Original Scope [143294]; Laborer [109.09 h] | 143,293.99 | 57,317.6 | PO |
| MOD-RCP-GB-25 |  | Place 500mm thick coarse sand bedding for Rainwater Collection Ponds Zone 2 | 21d | 2026-07-22 A | 2027-02-17 | MOD-RCP-GB-15 |  | 21d | 2026-07-22 | 2026-08-16 | 36.8d | 0d | Contract Price Original Scope [122823]; Paver Operator [34.72 h]; Laborer [69.44 h] | 122,823.42 |  | PO |
| MOD-RCP-GB-35 |  | Compact and level bedding for Rainwater Collection Ponds Zone 2 | 17d | 2027-02-17 | 2027-03-23 | MOD-RCP-GB-25 |  |  |  |  | 36.8d | 0d | Contract Price Original Scope [102353]; Compactor Operator [28.25 h]; Laborer [28.25 h] | 102,352.85 |  | PO |
|  | 3 | **Concrete Structures** |  | 2026-03-02 | 2027-04-01 |  |  |  |  |  |  |  |  |  |  |  |
|  | 4 | **Construction of pond slab, walls, vertical structures** |  | 2026-03-02 | 2027-04-01 |  |  |  |  |  |  |  |  |  |  |  |
| MOD-RCP-CS-10 |  | Clean the subgrade for Rainwater Collection Ponds Zone 2 | 2d | 2026-03-02 A | 2026-03-05 A | MOD-RCP-GB-15 SS, MOD-RCP-GB-35 | 100% |  | 2026-10-24 | 2026-10-26 |  |  | Contract Price Original Scope [1062.51]; Laborer [6.67 h] | 1,062.51 | 1,062.51 | PO |
| MOD-RCP-CS-20 |  | Lay 100mm thick blinding (C15) for Rainwater Collection Ponds Zone 2 | 3d | 2026-03-04 A | 2026-03-09 A | MOD-RCP-CS-10 | 100% |  | 2026-10-26 | 2026-10-29 |  |  | Contract Price Original Scope [9562.63]; Concrete Finisher [5 h]; Laborer [15 h] | 9,562.63 | 9,562.63 | PO |
| MOD-RCP-CS-40 |  | Cast base slab with C20 concrete (300–500mm thick) for Rainwater Collection Ponds Zone 2 | 4d | 2026-03-10 A | 2026-03-14 A | MOD-RCP-CS-30 | 100% |  | 2026-11-08 | 2026-11-12 |  |  | Contract Price Original Scope [58158.7]; Concrete Finisher [12.12 h]; Laborer [24.24 h] | 58,158.74 | 58,158.74 | PO |
| MOD-RCP-CS-50 |  | Construct sub-walls (150–300mm thick) for Rainwater Collection Ponds Zone 2 | 7d | 2026-03-14 A | 2026-03-28 A | MOD-RCP-CS-40 | 100% |  | 2026-11-12 | 2026-11-21 |  |  | Contract Price Original Scope [16125.1]; Mason [35 h]; Laborer [23.33 h] | 16,125.08 | 16,125.08 | PO |
| MOD-RCP-CS-60 |  | Construct vertical structures (0.2–1.22m wide) for Rainwater Collection Ponds Zone 2 | 9d | 2026-03-21 A | 2026-03-31 A | MOD-RCP-CS-50 | 100% |  | 2026-11-21 | 2026-12-01 |  |  | Contract Price Original Scope [160776]; Crane Operator [13.64 h]; Mason [54.55 h]; Laborer [40.91 h] | 160,776.16 | 160,776.16 | PO |
| MOD-RCP-CS-70 |  | Remove formwork after curing for Rainwater Collection Ponds Zone 2 | 3d | 2026-04-02 A | 2026-04-07 A | MOD-RCP-CS-60 | 100% |  | 2026-12-01 | 2026-12-05 |  |  | Contract Price Original Scope [8461.9]; Carpenter [5.01 h]; Laborer [10.01 h] | 8,461.9 | 8,461.9 | PO |
| MOD-RCP-CS-80 |  | Apply power floating finish for Rainwater Collection Ponds Zone 2 | 2d | 2026-04-06 A | 2026-04-12 A | MOD-RCP-CS-70 | 100% |  | 2026-12-05 | 2026-12-07 |  |  | Contract Price Original Scope [1457.95]; Concrete Finisher [6.67 h] | 1,457.95 | 1,457.95 | PO |
| MOD-RCP-CS-90 |  | Apply waterproofing, bitumen, screed, perimeter lining for Rainwater Collection Ponds Zone 2 | 7d | 2026-04-09 A | 2026-04-20 A | MOD-RCP-CS-80 | 100% |  | 2026-12-07 | 2026-12-15 |  |  | Contract Price Original Scope [6545.01]; Waterproofing Specialist [31.82 h]; Laborer [21.21 h] | 6,545.01 | 6,545.01 | PO |
| MOD-RCP-CS-30 |  | Install formwork and reinforcement for Rainwater Collection Ponds Zone 2 | 8d | 2026-09-20 A | 2027-04-01 | MOD-RCP-CS-20 |  | 8d | 2026-09-20 | 2026-09-30 | 36.8d | 0d | Contract Price Original Scope [32702.5]; Carpenter [26.67 h]; Steel Fixer [26.67 h] | 32,702.46 |  | PO |
|  | 5 | **Energy Dissipation & Siphon Structures** |  | 2025-12-09 | 2026-01-15 |  |  |  |  |  |  |  |  |  |  |  |
|  | 6 | **Siphon pipes, energy dissipators, and associated civil works** |  | 2025-12-09 | 2026-01-15 |  |  |  |  |  |  |  |  |  |  |  |
| MOD-RCP-ED-8 |  | Excavate for low-level areas for Rainwater Collection Ponds Zone 2 | 3d | 2025-12-09 A | 2025-12-13 A | MOD-RCP-CS-60 | 100% |  | 2026-09-13 | 2026-09-16 |  |  | Contract Price Original Scope [2379.86]; Excavator Operator [5 h]; Laborer [10 h] | 2,379.86 | 2,379.86 | PO |
| MOD-RCP-ED-18 |  | Lay granular bedding and compact for Rainwater Collection Ponds Zone 2 | 11d | 2025-12-14 A | 2025-12-17 A | MOD-RCP-ED-8 | 100% |  | 2026-09-16 | 2026-09-30 |  |  | Contract Price Original Scope [20738.8]; Compactor Operator [18.33 h]; Laborer [36.66 h] | 20,738.8 | 20,738.8 | PO |
| MOD-RCP-ED-28 |  | Install siphon pipe with DI 90° bends for Rainwater Collection Ponds Zone 2 | 10d | 2025-12-16 A | 2025-12-22 A | MOD-RCP-ED-18 | 100% |  | 2026-09-30 | 2026-10-12 |  |  | Contract Price Original Scope [20398.8]; Crane Operator [16.67 h]; Pipefitter [33.33 h] | 20,398.82 | 20,398.82 | PO |
| MOD-RCP-ED-38 |  | Place coarse gravel tamping for Rainwater Collection Ponds Zone 2 | 8d | 2025-12-23 A | 2025-12-27 A | MOD-RCP-ED-28 | 100% |  | 2026-10-12 | 2026-10-21 |  |  | Contract Price Original Scope [16999]; Laborer [26.67 h] | 16,999.02 | 16,999.02 | PO |
| MOD-RCP-ED-48 |  | Construct reinforced concrete side walls for Rainwater Collection Ponds Zone 2 | 6d | 2025-12-27 A | 2026-01-03 A | MOD-RCP-ED-38 | 100% |  | 2026-10-21 | 2026-10-28 |  |  | Contract Price Original Scope [5099.71]; Mason [30 h]; Laborer [20 h] | 5,099.71 | 5,099.71 | PO |
| MOD-RCP-ED-58 |  | Brickwork and finishing for Rainwater Collection Ponds Zone 2 | 2d | 2026-01-06 A | 2026-01-10 A | MOD-RCP-ED-48 | 100% |  | 2026-10-28 | 2026-10-31 |  |  | Contract Price Original Scope [1359.92]; Mason [6.67 h]; Laborer [3.33 h] | 1,359.92 | 1,359.92 | PO |
| MOD-RCP-ED-68 |  | Install energy dissipators (gabion baffles, riprap) for Rainwater Collection Ponds Zone 2 | 2d | 2026-01-11 A | 2026-01-15 A | MOD-RCP-ED-58 | 100% |  | 2026-10-31 | 2026-11-02 |  |  | Contract Price Original Scope [1019.94]; Crane Operator [3.33 h]; Laborer [10 h] | 1,019.94 | 1,019.94 | PO |

| ID | WBS | Activity | Duration | Start | Finish | Predecessors | Complete | Planned start | Planned finish | Total float | Free float | Calendar | Resources | Cost | Actual cost | MOD-2937 |
| --- | --- | --- | --- | --- | --- | --- | --- | --- | --- | --- | --- | --- | --- | --- | --- | --- |
|  | 4 | **Road Crossing Zone 2** |  | 2026-12-31 | 2027-08-02 |  |  |  |  |  |  |  |  |  |  |  |
|  | 14 | **uPVC Road Crossing Pipes** |  | 2026-12-31 | 2027-04-07 |  |  |  |  |  |  |  |  |  |  |  |
|  | 15 | **Installation of uPVC pipes of various diameters crossing roadways** |  | 2026-12-31 | 2027-04-07 |  |  |  |  |  |  |  |  |  |  |  |
| MOD-ROC-PV-10 |  | Demarcation and traffic diversion (if required) for Road Crossing Zone 2 | 6d | 2026-12-31 | 2027-01-07 | MOD-GEI-SF-001, MOD-RCP-ER-8 |  |  |  | -131d | 0d |  | Contract Price Original Scope [60142.2]; Laborer [43.64 h]; Surveyor [21.82 h] | 60,142.24 |  | RD |
| MOD-ROC-PV-20 |  | Saw cutting and removal of asphalt (if applicable) for Road Crossing Zone 2 | 12d | 2027-01-07 | 2027-01-21 | MOD-ROC-PV-10 |  |  |  | -131d | 0d |  | Contract Price Original Scope [120284]; Road Cutter Operator [328.56 h]; Laborer [657.12 h] | 120,284.48 |  | RD |
| MOD-ROC-PV-30 |  | Excavation across road width to required depth for Road Crossing Zone 2 | 10d | 2027-01-21 | 2027-02-02 | MOD-ROC-PV-20, A1600 |  |  |  | -131d | 0d |  | Contract Price Original Scope [180427]; Excavator Operator [328.56 h]; Laborer [657.12 h] | 180,426.71 |  | RD |
| MOD-ROC-PV-40 |  | Preparation of trench base with compacted bedding for Road Crossing Zone 2 | 5d | 2027-02-02 | 2027-02-09 | MOD-ROC-PV-30 |  |  |  | -131d | 0d |  | Contract Price Original Scope [120284]; Compactor Operator [54.55 h]; Laborer [109.09 h] | 120,284.48 |  | RD |
| MOD-ROC-PV-50 |  | Laying of uPVC pipe (300mm, 315mm, 400mm, 600mm dia) for Road Crossing Zone 2 | 10d | 2027-02-09 | 2027-03-02 | MOD-ROC-PV-40 |  |  |  | -131d | 0d |  | Contract Price Original Scope [481138]; Crane Operator [98.18 h]; Plumber [196.36 h] | 481,137.9 |  | RD |
| MOD-ROC-PV-60 |  | Placement of supports and protection around the pipe for Road Crossing Zone 2 | 5d | 2027-03-02 | 2027-03-15 | MOD-ROC-PV-50 |  |  |  | -131d | 0d |  | Contract Price Original Scope [120284]; Carpenter [36.36 h]; Laborer [72.73 h] | 120,284.48 |  | RD |
| MOD-ROC-PV-70 |  | Testing of installed pipeline for Road Crossing Zone 2 | 6d | 2027-03-16 | 2027-03-22 | MOD-ROC-PV-60 |  |  |  | -131d | 0d |  | Contract Price Original Scope [30071.1]; Technician [24 h]; Plumber [48 h] | 30,071.12 |  | RD |
| MOD-ROC-PV-80 |  | Backfilling and compaction in layers for Road Crossing Zone 2 | 8d | 2027-03-23 | 2027-03-31 | MOD-ROC-PV-70, MOD-GEI-PL-001 |  |  |  | -131d | 0d |  | Contract Price Original Scope [60142.2]; Compactor Operator [219.04 h]; Laborer [438.08 h] | 60,142.24 |  | RD |
| MOD-ROC-PV-90 |  | Reinstatement of road surface for Road Crossing Zone 2 | 6d | 2027-04-01 | 2027-04-07 | MOD-ROC-PV-80 |  |  |  | -131d | 0d |  | Contract Price Original Scope [30071.1]; Paver Operator [328.56 h]; Laborer [657.12 h] | 30,071.12 |  | RD |
|  | 16 | **GRP Road Crossing Pipes** |  | 2027-04-08 | 2027-08-02 |  |  |  |  |  |  |  |  |  |  |  |
|  | 17 | **Installation of GRP pipes (800mm–1000mm dia) for road crossings** |  | 2027-04-08 | 2027-08-02 |  |  |  |  |  |  |  |  |  |  |  |
| MOD-ROC-GR-10 |  | Set out location and coordinate with road authority for Road Crossing Zone 2 | 5d | 2027-04-08 | 2027-04-13 | MOD-ROC-PV-10, MOD-ROC-PV-90 |  |  |  | -131d | 0d |  | Contract Price Original Scope [22656.7]; Laborer [84.08 h]; Surveyor [84.08 h] | 22,656.74 |  | RD |
| MOD-ROC-GR-20 |  | Excavate trench across road at designed depth for Road Crossing Zone 2 | 12d | 2027-04-14 | 2027-04-27 | MOD-ROC-GR-10 |  |  |  | -131d | 0d |  | Contract Price Original Scope [45313.5]; Excavator Operator [84.08 h]; Laborer [168.16 h] | 45,313.48 |  | RD |
| MOD-ROC-GR-30 |  | Lay compacted granular bedding for Road Crossing Zone 2 | 16d | 2027-04-28 | 2027-05-20 | MOD-ROC-GR-20 |  |  |  | -131d | 0d |  | Contract Price Original Scope [67970.2]; Compactor Operator [58.18 h]; Laborer [116.36 h] | 67,970.22 |  | RD |
| MOD-ROC-GR-40 |  | Install GRP pipe (800mm & 1000mm dia) for Road Crossing Zone 2 | 21d | 2027-05-22 | 2027-06-14 | MOD-ROC-GR-30 |  |  |  | -131d | 0d |  | Contract Price Original Scope [181254]; Crane Operator [134.55 h]; Pipefitter [269.09 h] | 181,253.92 |  | RD |
| MOD-ROC-GR-50 |  | Provide structural supports and closure at both ends for Road Crossing Zone 2 | 9d | 2027-06-15 | 2027-06-24 | MOD-ROC-GR-40, A102810 |  |  |  | -131d | 0d |  | Contract Price Original Scope [45313.5]; Carpenter [32.73 h]; Laborer [65.45 h] | 45,313.48 |  | RD |
| MOD-ROC-GR-60 |  | Perform leak testing as per specifications for Road Crossing Zone 2 | 5d | 2027-06-26 | 2027-06-30 | MOD-ROC-GR-50 |  |  |  | -131d | 0d |  | Contract Price Original Scope [11328.4]; Technician [20 h]; Plumber [40 h] | 11,328.37 |  | RD |
| MOD-ROC-GR-70 |  | Backfill and compact in layers for Road Crossing Zone 2 | 15d | 2027-07-01 | 2027-07-18 | MOD-ROC-GR-60, MOD-GEI-PL-001 |  |  |  | -131d | 0d |  | Contract Price Original Scope [45313.5]; Compactor Operator [54.55 h]; Laborer [109.09 h] | 45,313.48 |  | RD |
| MOD-ROC-GR-80 |  | Reinstate road surface (asphalt/concrete) for Road Crossing Zone 2 | 8d | 2027-07-19 | 2027-07-27 | MOD-ROC-GR-70 |  |  |  | -131d | 0d |  | Contract Price Original Scope [22656.7]; Paver Operator [84.08 h]; Laborer [168.16 h] | 22,656.74 |  | RD |
| MOD-ROC-GR-90 |  | Final inspection and approval by relevant authority for Road Crossing Zone 2 | 5d | 2027-07-28 | 2027-08-02 | MOD-ROC-GR-80 |  |  |  | -131d | 0d |  | Contract Price Original Scope [11328.4]; Surveyor [20 h]; Technician [20 h] | 11,328.37 |  | RD |
|  | 6 | **Zone 1** |  | 2025-07-22 | 2027-10-19 |  |  |  |  |  |  |  |  |  |  |  |
|  | 1 | **Sewerage Network Zone 1** |  | 2025-11-03 | 2027-04-18 |  |  |  |  |  |  |  |  |  |  |  |
|  | 1 | **Pipework: Supply, Installation, and Testing** |  | 2025-11-03 | 2026-11-12 |  |  |  |  |  |  |  |  |  |  |  |
|  | 1 | **UPVC Pipes Installation (150mm–315mm)** |  | 2025-11-03 | 2026-03-18 |  |  |  |  |  |  |  |  |  |  |  |
| MOD-SWN-PW-665 |  | Excavation and Trenching UPVC for Sewerage Network Zone 1 | 21d | 2025-11-03 A | 2026-01-01 A | A102500, A102190, A1600 | 100% | 2025-12-15 | 2026-01-04 |  |  | 7-Day Workweek-9 | Contract Price Original Scope [73188.3]; Excavator Operator [344.83 h]; Laborer [689.66 h] | 73,188.29 | 73,188.29 | SW |
| MOD-SWN-PW-675 |  | Lean Concrete / Bedding UPVC for Sewerage Network Zone 1 | 21d | 2025-11-05 A | 2026-01-13 A | MOD-SWN-PW-665 | 100% | 2025-12-28 | 2026-01-18 |  |  | 7-Day Workweek-9 | Contract Price Original Scope [18297.1]; Laborer [160 h] | 18,297.07 | 18,297.07 | SW |
| MOD-SWN-PW-625 |  | UPVC Pipes Installation (150mm–315mm) UPVC for Sewerage Network Zone 1 | 13d | 2025-11-06 A | 2026-01-21 A | MOD-SWN-PW-665, MOD-SWN-PW-675, A1650 | 100% | 2026-01-26 | 2026-02-07 |  |  | 7-Day Workweek-9 | Contract Price Original Scope [164674]; Excavator Operator [47.27 h]; Pipefitter [94.55 h]; Laborer [94.55 h] | 164,673.65 | 164,673.65 | SW |
| MOD-SWN-PW-695 |  | Coating / Wrapping UPVC for Sewerage Network Zone 1 | 15d | 2025-11-30 A | 2026-02-11 A | MOD-SWN-PW-685 | 100% | 2026-02-08 | 2026-02-23 |  |  | 7-Day Workweek-9 | Contract Price Original Scope [36594.2]; Laborer [300 h] | 36,594.15 | 36,594.15 | SW |
| MOD-SWN-PW-655 |  | Backfilling & Warrning Tape UPVC for Sewerage Network Zone 1 | 15d | 2026-02-01 A | 2026-03-18 A | MOD-SWN-PW-645, MOD-SWN-PW-695, MOD-GEI-PL-001 | 100% | 2026-03-24 | 2026-04-08 |  |  | 7-Day Workweek-9 | Contract Price Original Scope [36594.2]; Compactor Operator [0.02 h]; Laborer [0.04 h] | 36,594.15 | 36,594.15 | SW |
| MOD-SWN-PW-685 |  | Test (Pressure - Slope) UPVC for Sewerage Network Zone 1 | 15d | 2026-02-01 A | 2026-02-01 A | MOD-SWN-PW-625 | 100% | 2026-02-25 | 2026-03-11 |  |  | 7-Day Workweek-9 | Contract Price Original Scope [36594.2]; Pipefitter [10 h]; Technician [10 h] | 36,594.15 | 36,594.15 | SW |

| ID | WBS | Activity | Duration | Start | Finish | Predecessors | Complete | Remaining | Planned start | Planned finish | Total float | Free float | Calendar | Resources | Cost | Actual cost | MOD-2937 |
| --- | --- | --- | --- | --- | --- | --- | --- | --- | --- | --- | --- | --- | --- | --- | --- | --- | --- |
|  | 2 | **GRP Pipes Installation (400mm–700mm)** |  | 2025-11-17 | 2026-02-28 |  |  |  |  |  |  |  |  |  |  |  |  |
| MOD-SWN-PW-715 |  | Excavation and Trenching GRP for Sewerage Network Zone 1 | 21d | 2025-11-17 A | 2026-01-20 A | A102500, A102190, A1600 | 100% |  | 2025-12-23 | 2026-01-12 |  |  | 7-Day Workweek-9 | Contract Price Original Scope [33028.3]; Excavator Operator [344.83 h]; Laborer [689.66 h] | 33,028.26 | 33,028.26 | SW |
| MOD-SWN-PW-725 |  | Lean Concrete / Bedding GRP for Sewerage Network Zone 1 | 21d | 2025-11-22 A | 2026-01-30 A | MOD-SWN-PW-715, MOD-SWN-PW-715 FF | 100% |  | 2025-12-28 | 2026-01-18 |  |  | 7-Day Workweek-9 | Contract Price Original Scope [8257.06]; Laborer [160 h] | 8,257.06 | 8,257.06 | SW |
| MOD-SWN-PW-635 |  | GRP Pipes Installation (400mm–700mm) GRP for Sewerage Network Zone 1 | 21d | 2025-11-29 A | 2026-02-01 A | MOD-SWN-PW-625 SS, MOD-SWN-PW-725, A102560, A1650 | 100% |  | 2026-02-03 | 2026-02-23 |  |  | 7-Day Workweek-9 | Contract Price Original Scope [74313.6]; Crane Operator [207.27 h]; Pipefitter [414.55 h]; Laborer [621.82 h] | 74,313.58 | 74,313.58 | SW |
| MOD-SWN-PW-745 |  | Coating / Wrapping GRP for Sewerage Network Zone 1 | 15d | 2025-12-02 A | 2026-02-27 A | MOD-SWN-PW-735, MOD-SWN-PW-735 FF | 100% |  | 2026-02-07 | 2026-02-22 |  |  | 7-Day Workweek-9 | Contract Price Original Scope [16514.1]; Laborer [300 h] | 16,514.13 | 16,514.13 | SW |
| MOD-SWN-PW-735 |  | Test (Pressure - Slope) GRP for Sewerage Network Zone 1 | 15d | 2026-02-02 A | 2026-02-10 A | MOD-SWN-PW-635 | 100% |  | 2026-02-28 | 2026-03-15 |  |  | 7-Day Workweek-9 | Contract Price Original Scope [16514.1]; Pipefitter [10 h]; Technician [10 h] | 16,514.13 | 16,514.13 | SW |
| MOD-SWN-PW-705 |  | Backfilling & Warrning Tape GRP for Sewerage Network Zone 1 | 15d | 2026-02-04 A | 2026-02-28 A | MOD-SWN-PW-745, MOD-SWN-PW-745 FF, MOD-GEI-PL-001 | 100% |  | 2026-03-27 | 2026-04-11 |  |  | 7-Day Workweek-9 | Contract Price Original Scope [16514.1]; Compactor Operator [0.02 h]; Laborer [0.04 h] | 16,514.13 | 16,514.13 | SW |
|  | 3 | **HDPE Pressure Pipes Installation (250mm–630mm)** |  | 2025-11-22 | 2026-11-12 |  |  |  |  |  |  |  |  |  |  |  |  |
| MOD-SWN-PW-765 |  | Excavation and Trenching HDPE for Sewerage Network Zone 1 | 21d | 2025-11-22 A | 2026-10-31 A | A102500, A102190, A1600 | 100% |  | 2025-12-21 | 2026-01-10 |  |  | 7-Day Workweek-9 | Contract Price Original Scope [41673.4]; Excavator Operator [344.83 h]; Laborer [689.66 h] | 41,673.43 | 41,673.43 | SW |
| MOD-SWN-PW-645 |  | HDPE Pressure Pipes Installation (250mm–630mm) HDPE for Sewerage Network Zone 1 | 21d | 2025-11-27 A | 2026-10-31 A | MOD-SWN-PW-635 SS, MOD-SWN-PW-775, A1650 | 100% |  | 2026-01-27 | 2026-02-17 |  |  | 7-Day Workweek-9 | Contract Price Original Scope [93765.2]; Pipefitter [261.11 h]; Laborer [522.22 h]; Welder [261.11 h] | 93,765.21 | 93,765.21 | SW |
| MOD-SWN-PW-795 |  | Coating / Wrapping HDPE for Sewerage Network Zone 1 | 15d | 2025-12-11 A | 2026-10-31 A | MOD-SWN-PW-785, MOD-SWN-PW-785 FF | 100% |  | 2026-02-14 | 2026-03-01 |  |  | 7-Day Workweek-9 | Contract Price Original Scope [20836.7]; Laborer [300 h] | 20,836.71 | 20,836.71 | SW |
| MOD-SWN-PW-775 |  | Lean Concrete / Bedding HDPE for Sewerage Network Zone 1 | 21d | 2026-02-02 A | 2026-11-08 | MOD-SWN-PW-765, MOD-SWN-PW-765 FF | 95% | 1.05d | 2026-02-13 | 2026-03-06 | 81.15d | 0d | 7-Day Workweek-9 | Contract Price Original Scope [10418.4]; Laborer [160 h] | 10,418.36 | 9,897.44 | SW |
| MOD-SWN-PW-785 |  | Test (Pressure - Slope) HDPE for Sewerage Network Zone 1 | 15d | 2026-02-03 A | 2026-11-08 | MOD-SWN-PW-645 | 95% | 0.75d | 2026-03-08 | 2026-03-23 | 126.6d | 0d | 7-Day Workweek-9 | Contract Price Original Scope [20836.7]; Pipefitter [10 h]; Technician [10 h] | 20,836.71 | 19,794.88 | SW |
| MOD-SWN-PW-755 |  | Backfilling & Warrning Tape HDPE for Sewerage Network Zone 1 | 15d | 2026-02-05 A | 2026-11-12 | MOD-SWN-PW-795, MOD-SWN-PW-795 FF, MOD-GEI-PL-001 | 78% | 3.3d | 2026-03-29 | 2026-04-13 | 126.6d | 66.25d | 7-Day Workweek-9 | Contract Price Original Scope [20836.7]; Compactor Operator [0.02 h]; Laborer [0.04 h] | 20,836.71 | 16,252.64 | SW |
|  | 2 | **Fittings and Valves** |  | 2026-11-08 | 2026-12-09 |  |  |  |  |  |  |  |  |  |  |  |  |
| MOD-SWN-FV-001 |  | Supply & Installation of HDPE Elbows for Sewerage Network Zone 1 | 6d | 2026-11-08 | 2026-11-15 | MOD-SWN-PW-645 |  |  |  |  | 70.15d | 0d |  | Contract Price Original Scope [13652.4]; Pipefitter [59.88 h]; Welder [59.88 h] | 13,652.43 |  | SW |
| MOD-SWN-FV-002 |  | Gate Valves Installation for Sewerage Network Zone 1 | 4d | 2026-11-15 | 2026-11-19 | MOD-SWN-FV-001, A102750 |  |  |  |  | 70.15d | 0d |  | Contract Price Original Scope [9660.6]; Laborer [4.16 h]; Plumber [4.16 h] | 9,660.6 |  | SW |
| MOD-SWN-FV-003 |  | Drain Valves Installation for Sewerage Network Zone 1 | 4d | 2026-11-19 | 2026-11-24 | MOD-SWN-FV-002, A102750 |  |  |  |  | 70.15d | 0d |  | Contract Price Original Scope [8785.65]; Laborer [5.76 h]; Plumber [5.76 h] | 8,785.65 |  | SW |
| MOD-SWN-FV-004 |  | Air Breather & Air Release Valves Installation for Sewerage Network Zone 1 | 10d | 2026-11-24 | 2026-12-06 | MOD-SWN-FV-003, A102750, A102780 |  |  |  |  | 70.15d | 0d |  | Contract Price Original Scope [23181.5]; Mechanical Technician [7.2 h]; Laborer [7.2 h] | 23,181.49 |  | SW |
| MOD-SWN-FV-005 |  | Jointing & Piping Accessories Installation for Sewerage Network Zone 1 | 3d | 2026-12-06 | 2026-12-09 | MOD-SWN-FV-004 |  |  |  |  | 70.15d | 33.3d |  | Contract Price Original Scope [6142.24]; Pipefitter [60.06 h] | 6,142.24 |  | SW |
|  | 3 | **Valve & Flow Meter Chambers** |  | 2026-06-01 | 2027-01-17 |  |  |  |  |  |  |  |  |  |  |  |  |
|  | 1 | **Valve Chambers Construction** |  | 2026-06-01 | 2026-12-31 |  |  |  |  |  |  |  |  |  |  |  |  |
| MOD-SWN-PW-1135 |  | Excavation Valve Chamber for Sewerage Network Zone 1 | 21d | 2026-06-01 A | 2026-11-16 | A102500, A102190, A1600 | 55% | 9.45d | 2026-09-19 | 2026-10-09 | 60.35d | 0d | 7-Day Workweek-9 | Contract Price Original Scope [2068.22]; Excavator Operator [344.83 h]; Laborer [689.66 h] | 2,068.22 | 1,137.52 | SW |
| MOD-SWN-PW-1145 |  | Lean Concrete / Bedding Valve Chamber for Sewerage Network Zone 1 | 21d | 2026-06-09 A | 2026-11-27 | MOD-SWN-PW-1135, MOD-SWN-PW-1135 FF, MOD-SWN-PW-1135 SS | 45% | 11.55d | 2026-10-10 | 2026-10-30 | 60.35d | 0d | 7-Day Workweek-9 | Contract Price Original Scope [1378.81]; Laborer [160 h] | 1,378.81 | 620.47 | SW |
| MOD-SWN-VF-164 |  | Valve Chambers Construction Valve Chamber for Sewerage Network Zone 1 | 6d | 2026-06-23 A | 2026-12-01 | MOD-SWN-PW-1145 | 35% | 3.9d | 2026-10-31 | 2026-11-05 | 60.35d | 0d | 7-Day Workweek-9 | Contract Price Original Scope [6204.65]; Mason [5 h]; Laborer [5 h]; Technician [5 h] | 6,204.65 | 2,171.63 | SW |
| MOD-SWN-PW-1155 |  | Test Valve Chamber for Sewerage Network Zone 1 | 15d | 2026-12-01 | 2026-12-16 | MOD-SWN-VF-164 |  |  |  |  | 76.8d | 0d | 7-Day Workweek-9 | Contract Price Original Scope [1378.81]; Pipefitter [10 h]; Technician [10 h] | 1,378.81 |  | SW |
| MOD-SWN-PW-1125 |  | Backfilling Valve Chamber for Sewerage Network Zone 1 | 15d | 2026-12-16 | 2026-12-31 | MOD-SWN-PW-1155, MOD-GEI-PL-001 |  |  |  |  | 76.8d | 16.45d | 7-Day Workweek-9 | Contract Price Original Scope [2757.62]; Compactor Operator [0.02 h]; Laborer [0.04 h] | 2,757.62 |  | SW |

| ID | WBS | Activity | Duration | Start | Finish | Predecessors | Complete | Remaining | Planned start | Planned finish | Total float | Free float | Calendar | Resources | Cost | Actual cost | MOD-2937 |
| --- | --- | --- | --- | --- | --- | --- | --- | --- | --- | --- | --- | --- | --- | --- | --- | --- | --- |
|  | 2 | **Water Drain Chambers Construction** |  | 2026-07-11 | 2026-12-29 |  |  |  |  |  |  |  |  |  |  |  |  |
| MOD-SWN-PW-1175 |  | Excavation Water Drain Chamber for Sewerage Network Zone 1 | 21d | 2026-07-11 A | 2026-11-12 | A102500, A102190, A1600 | 75% | 5.25d | 2026-07-18 | 2026-08-07 | 73.7d | 0d | 7-Day Workweek-9 | Contract Price Original Scope [6718.28]; Excavator Operator [344.83 h]; Laborer [689.66 h] | 6,718.28 | 5,038.71 | SW |
| MOD-SWN-PW-1185 |  | Lean Concrete / Bedding Water Drain Chamber for Sewerage Network Zone 1 | 21d | 2026-07-22 A | 2026-11-18 | MOD-SWN-PW-1175, MOD-SWN-PW-1175 FF, MOD-SWN-PW-1175 SS | 70% | 6.3d | 2026-09-25 | 2026-10-16 | 73.7d | 13.35d | 7-Day Workweek-9 | Contract Price Original Scope [4478.86]; Laborer [160 h] | 4,478.86 | 3,135.2 | SW |
| MOD-SWN-VF-174 |  | Water Drain Chambers Construction Water Drain Chamber for Sewerage Network Zone 1 | 19d | 2026-07-29 A | 2026-12-08 | MOD-SWN-VF-164, MOD-SWN-PW-1185 | 65% | 6.65d | 2026-11-06 | 2026-11-24 | 60.35d | 0d | 7-Day Workweek-9 | Contract Price Original Scope [20154.8]; Mason [5 h]; Laborer [5 h]; Technician [5 h] | 20,154.85 | 13,100.65 | SW |
| MOD-SWN-PW-1195 |  | Test Water Drain Chamber for Sewerage Network Zone 1 | 15d | 2026-08-01 A | 2026-12-14 | MOD-SWN-VF-174 | 60% | 6d | 2026-08-01 | 2026-08-15 | 79.15d | 0d | 7-Day Workweek-9 | Contract Price Original Scope [4478.86]; Pipefitter [10 h]; Technician [10 h] | 4,478.86 | 2,687.31 | SW |
| MOD-SWN-PW-1165 |  | Backfilling Water Drain Chamber for Sewerage Network Zone 1 | 15d | 2026-12-14 | 2026-12-29 | MOD-SWN-PW-1195, MOD-GEI-PL-001 |  |  |  |  | 79.15d | 18.8d | 7-Day Workweek-9 | Contract Price Original Scope [8957.71]; Compactor Operator [0.02 h]; Laborer [0.04 h] | 8,957.71 |  | SW |
|  | 3 | **Discharge Chambers Construction** |  | 2026-07-13 | 2027-01-15 |  |  |  |  |  |  |  |  |  |  |  |  |
| MOD-SWN-PW-1215 |  | Excavation Discharge Chamber for Sewerage Network Zone 1 | 21d | 2026-07-13 A | 2026-11-13 | A102500, A102190, A1600 | 80% | 4.2d | 2026-09-19 | 2026-10-09 | 75.1d | 0d | 7-Day Workweek-9 | Contract Price Original Scope [4693.08]; Excavator Operator [344.83 h]; Laborer [689.66 h] | 4,693.08 | 3,754.47 | SW |
| MOD-SWN-PW-1225 |  | Lean Concrete / Bedding Discharge Chamber for Sewerage Network Zone 1 | 21d | 2026-07-14 A | 2026-11-23 | MOD-SWN-PW-1215, MOD-SWN-PW-1215 FF, MOD-SWN-PW-1215 SS | 60% | 8.4d | 2026-10-10 | 2026-10-30 | 75.1d | 14.75d | 7-Day Workweek-9 | Contract Price Original Scope [3128.72]; Laborer [160 h] | 3,128.72 | 1,877.23 | SW |
| MOD-SWN-VF-184 |  | Discharge Chambers Construction Discharge Chamber for Sewerage Network Zone 1 | 13d | 2026-07-29 A | 2026-12-16 | MOD-SWN-VF-174, MOD-SWN-PW-1225 | 50% | 6.5d | 2026-11-15 | 2026-11-28 | 60.35d | 0d | 7-Day Workweek-9 | Contract Price Original Scope [14079.2]; Mason [5 h]; Laborer [5 h]; Technician [5 h] | 14,079.25 | 7,039.63 | SW |
| MOD-SWN-PW-1235 |  | Test Discharge Chamber for Sewerage Network Zone 1 | 15d | 2026-12-16 | 2026-12-31 | MOD-SWN-VF-184 |  |  |  |  | 62.35d | 0d | 7-Day Workweek-9 | Contract Price Original Scope [3128.72]; Pipefitter [10 h]; Technician [10 h] | 3,128.72 |  | SW |
| MOD-SWN-PW-1205 |  | Backfilling Discharge Chamber for Sewerage Network Zone 1 | 15d | 2026-12-31 | 2027-01-15 | MOD-SWN-PW-1235, MOD-GEI-PL-001 |  |  |  |  | 62.35d | 2d | 7-Day Workweek-9 | Contract Price Original Scope [6257.45]; Compactor Operator [0.02 h]; Laborer [0.04 h] | 6,257.45 |  | SW |
|  | 4 | **Flow Meter Chambers Construction** |  | 2026-07-11 | 2027-01-17 |  |  |  |  |  |  |  |  |  |  |  |  |
| MOD-SWN-PW-1255 |  | Excavation Flow Meter Chamber for Sewerage Network Zone 1 | 21d | 2026-07-11 A | 2026-11-14 | A102500, A102190, A1600 | 63% | 7.77d | 2026-07-18 | 2026-08-07 | 83.53d | 0d | 7-Day Workweek-9 | Contract Price Original Scope [1497.73]; Excavator Operator [344.83 h]; Laborer [689.66 h] | 1,497.73 | 943.57 | SW |
| MOD-SWN-PW-1265 |  | Lean Concrete / Bedding Flow Meter Chamber for Sewerage Network Zone 1 | 21d | 2026-07-28 A | 2026-11-23 | MOD-SWN-PW-1255, MOD-SWN-PW-1255 FF, MOD-SWN-PW-1255 SS | 60% | 8.4d | 2026-08-04 | 2026-08-25 | 83.53d | 23.18d | 7-Day Workweek-9 | Contract Price Original Scope [998.49]; Laborer [160 h] | 998.49 | 599.09 | SW |
| MOD-SWN-VF-194 |  | Flow Meter Chambers Construction Flow Meter Chamber for Sewerage Network Zone 1 | 5d | 2026-08-01 A | 2026-12-18 | MOD-SWN-VF-184, MOD-SWN-PW-1265 | 60% | 2d | 2026-08-01 | 2026-08-05 | 60.35d | 0d | 7-Day Workweek-9 | Contract Price Original Scope [4493.2]; Mason [5 h]; Laborer [5 h]; Technician [5 h] | 4,493.2 | 2,695.92 | SW |
| MOD-SWN-PW-1275 |  | Test Flow Meter Chamber for Sewerage Network Zone 1 | 15d | 2026-12-18 | 2027-01-02 | MOD-SWN-VF-194 |  |  |  |  | 60.35d | 0d | 7-Day Workweek-9 | Contract Price Original Scope [998.49]; Pipefitter [10 h]; Technician [10 h] | 998.49 |  | SW |
| MOD-SWN-PW-1245 |  | Backfilling Flow Meter Chamber for Sewerage Network Zone 1 | 15d | 2027-01-02 | 2027-01-17 | MOD-SWN-PW-1275, MOD-GEI-PL-001 |  |  |  |  | 60.35d | 0d | 7-Day Workweek-9 | Contract Price Original Scope [1996.98]; Compactor Operator [0.02 h]; Laborer [0.04 h] | 1,996.98 |  | SW |
|  | 4 | **Manholes** |  | 2025-12-31 | 2026-11-28 |  |  |  |  |  |  |  |  |  |  |  |  |
| MOD-SWN-MH-005 |  | Depth Variation for Manholes for Sewerage Network Zone 1 | 8d | 2025-12-31 A | 2026-01-05 A | A1480, A102600 | 100% |  | 2026-03-08 | 2026-03-26 |  |  |  | Contract Price Original Scope [188.29]; Laborer [32 h]; Surveyor [32 h] | 188.29 | 188.29 | SW |
|  | 1 | **1200mm GRP Manholes with Backdrop** |  | 2026-01-01 | 2026-11-28 |  |  |  |  |  |  |  |  |  |  |  |  |
| MOD-SWN-PW-1295 |  | Excavation 1.2m GRP for Sewerage Network Zone 1 | 21d | 2026-01-01 A | 2026-11-07 | A102500, A102190, A1600 | 97% | 0.63d | 2026-01-10 | 2026-01-30 | 110.57d | 0d | 7-Day Workweek-9 | Contract Price Original Scope [126789]; Excavator Operator [344.83 h]; Laborer [689.66 h] | 126,788.74 | 122,985.08 | SW |
| MOD-SWN-PW-1305 |  | Lean Concrete / Bedding 1.2m GRP for Sewerage Network Zone 1 | 5d | 2026-01-03 A | 2026-11-07 | MOD-SWN-PW-1295, MOD-SWN-PW-1295 FF, MOD-SWN-PW-1295 SS | 96% | 0.2d | 2026-01-26 | 2026-01-31 | 110.57d | 0d | 7-Day Workweek-9 | Contract Price Original Scope [84525.8]; Laborer [160 h] | 84,525.83 | 81,144.79 | SW |
| MOD-SWN-MH-105 |  | 1200mm GRP Manholes with Backdrop 1.2m GRP for Sewerage Network Zone 1 | 21d | 2026-01-04 A | 2026-11-08 | MOD-SWN-PW-1305 | 95% | 1.05d | 2026-01-31 | 2026-02-21 | 110.57d | 0d | 7-Day Workweek-9 | Contract Price Original Scope [380366]; Boom Truck Operator [260.08 h]; Laborer [520.15 h] | 380,366.22 | 361,347.91 | SW |
| MOD-SWN-PW-1285 |  | Backfilling 1.2m GRP for Sewerage Network Zone 1 | 15d | 2026-10-30 A | 2026-11-28 | MOD-SWN-PW-1315, MOD-GEI-PL-001 | 5% | 14.25d | 2026-10-30 | 2026-11-14 | 110.57d | 50.22d | 7-Day Workweek-9 | Contract Price Original Scope [169052]; Compactor Operator [0.02 h]; Laborer [0.04 h] | 169,051.65 | 8,452.58 | SW |
| MOD-SWN-PW-1315 |  | Test 1.2m GRP for Sewerage Network Zone 1 | 5d | 2026-11-08 | 2026-11-13 | MOD-SWN-MH-105 |  |  |  |  | 110.57d | 0d | 7-Day Workweek-9 | Contract Price Original Scope [84525.8]; Pipefitter [10 h]; Technician [10 h] | 84,525.83 |  | SW |

| ID | WBS | Activity | Duration | Start | Finish | Predecessors | Complete | Remaining | Planned start | Planned finish | Total float | Free float | Calendar | Resources | Cost | Actual cost | MOD-2937 |
| --- | --- | --- | --- | --- | --- | --- | --- | --- | --- | --- | --- | --- | --- | --- | --- | --- | --- |
|  | 2 | **1500mm GRP Manholes (Standard & Backdrop)** |  | 2026-01-03 | 2026-11-28 |  |  |  |  |  |  |  |  |  |  |  |  |
| MOD-SWN-PW-1335 |  | Excavation 1.5m GRP for Sewerage Network Zone 1 | 21d | 2026-01-03 A | 2026-11-07 | A102500, A102190, A1600 | 97% | 0.63d | 2026-01-10 | 2026-01-30 | 110.57d | 0d | 7-Day Workweek-9 | Contract Price Original Scope [120079]; Excavator Operator [344.83 h]; Laborer [689.66 h] | 120,079.46 | 116,477.07 | SW |
| MOD-SWN-PW-1345 |  | Lean Concrete / Bedding 1.5m GRP for Sewerage Network Zone 1 | 5d | 2026-02-03 A | 2026-11-07 | MOD-SWN-PW-1335, MOD-SWN-PW-1335 FF, MOD-SWN-PW-1335 SS | 96% | 0.2d | 2026-02-19 | 2026-02-24 | 110.57d | 0d | 7-Day Workweek-9 | Contract Price Original Scope [80053]; Laborer [160 h] | 80,052.97 | 76,850.85 | SW |
| MOD-SWN-MH-115 |  | 1500mm GRP Manholes (Standard & Backdrop) 1.5m GRP for Sewerage Network Zone 1 | 21d | 2026-02-14 A | 2026-11-08 | MOD-SWN-MH-105 SS+5d, MOD-SWN-PW-1345 | 95% | 1.05d | 2026-03-10 | 2026-03-31 | 110.57d | 0d | 7-Day Workweek-9 | Contract Price Original Scope [360238]; Boom Truck Operator [109.88 h]; Laborer [219.76 h] | 360,238.37 | 342,226.46 | SW |
| MOD-SWN-PW-1325 |  | Backfilling 1.5m GRP for Sewerage Network Zone 1 | 15d | 2026-10-30 A | 2026-11-28 | MOD-SWN-PW-1355, MOD-GEI-PL-001 | 5% | 14.25d | 2026-10-30 | 2026-11-14 | 110.57d | 50.22d | 7-Day Workweek-9 | Contract Price Original Scope [160106]; Compactor Operator [0.02 h]; Laborer [0.04 h] | 160,105.94 | 8,005.3 | SW |
| MOD-SWN-PW-1355 |  | Test 1.5m GRP for Sewerage Network Zone 1 | 5d | 2026-11-08 | 2026-11-13 | MOD-SWN-MH-115 |  |  |  |  | 110.57d | 0d | 7-Day Workweek-9 | Contract Price Original Scope [80053]; Pipefitter [10 h]; Technician [10 h] | 80,052.97 |  | SW |
|  | 3 | **1800mm GRP Manholes (Standard & Backdrop)** |  | 2026-01-05 | 2026-11-27 |  |  |  |  |  |  |  |  |  |  |  |  |
| MOD-SWN-PW-1375 |  | Excavation 1.8m GRP for Sewerage Network Zone 1 | 21d | 2026-01-05 A | 2026-11-07 | A102500, A102190, A1600 | 97% | 0.63d | 2026-01-10 | 2026-01-30 | 110.57d | 0d | 7-Day Workweek-9 | Contract Price Original Scope [5990.45]; Excavator Operator [344.83 h]; Laborer [689.66 h] | 5,990.45 | 5,810.74 | SW |
| MOD-SWN-PW-1385 |  | Lean Concrete / Bedding 1.8m GRP for Sewerage Network Zone 1 | 5d | 2026-02-03 A | 2026-11-07 | MOD-SWN-PW-1375, MOD-SWN-PW-1375 FF, MOD-SWN-PW-1375 SS | 96% | 0.2d | 2026-02-19 | 2026-02-24 | 110.57d | 0d | 7-Day Workweek-9 | Contract Price Original Scope [3993.63]; Laborer [160 h] | 3,993.63 | 3,833.89 | SW |
| MOD-SWN-MH-125 |  | 1800mm GRP Manholes (Standard & Backdrop) 1.8m GRP for Sewerage Network Zone 1 | 17d | 2026-02-22 A | 2026-11-08 | MOD-SWN-MH-115 SS+5d, MOD-SWN-PW-1385 | 95% | 0.85d | 2026-03-17 | 2026-04-03 | 110.57d | 0d | 7-Day Workweek-9 | Contract Price Original Scope [17971.3]; Boom Truck Operator [6.63 h]; Laborer [13.27 h] | 17,971.35 | 17,072.78 | SW |
| MOD-SWN-PW-1365 |  | Backfilling 1.8m GRP for Sewerage Network Zone 1 | 15d | 2026-10-30 A | 2026-11-27 | MOD-SWN-PW-1395, MOD-GEI-PL-001 | 5% | 14.25d | 2026-10-30 | 2026-11-14 | 110.77d | 50.42d | 7-Day Workweek-9 | Contract Price Original Scope [7987.27]; Compactor Operator [0.02 h]; Laborer [0.04 h] | 7,987.27 | 399.36 | SW |
| MOD-SWN-PW-1395 |  | Test 1.8m GRP for Sewerage Network Zone 1 | 5d | 2026-11-08 | 2026-11-13 | MOD-SWN-MH-125 |  |  |  |  | 110.77d | 0d | 7-Day Workweek-9 | Contract Price Original Scope [3993.63]; Pipefitter [10 h]; Technician [10 h] | 3,993.63 |  | SW |
|  | 4 | **2000mm GRP Manholes (Standard & Backdrop)** |  | 2026-01-06 | 2026-11-28 |  |  |  |  |  |  |  |  |  |  |  |  |
| MOD-SWN-PW-1415 |  | Excavation 2m GRP for Sewerage Network Zone 1 | 21d | 2026-01-06 A | 2026-11-07 | A102500, A102190, A1600 | 97% | 0.63d | 2026-01-10 | 2026-01-30 | 110.57d | 0d | 7-Day Workweek-9 | Contract Price Original Scope [1897.06]; Excavator Operator [344.83 h]; Laborer [689.66 h] | 1,897.06 | 1,840.15 | SW |
| MOD-SWN-PW-1425 |  | Lean Concrete / Bedding 2m GRP for Sewerage Network Zone 1 | 5d | 2026-02-05 A | 2026-11-07 | MOD-SWN-PW-1415, MOD-SWN-PW-1415 FF, MOD-SWN-PW-1415 SS | 96% | 0.2d | 2026-02-22 | 2026-02-27 | 110.57d | 0d | 7-Day Workweek-9 | Contract Price Original Scope [1264.7]; Laborer [160 h] | 1,264.7 | 1,214.12 | SW |
| MOD-SWN-MH-135 |  | 2000mm GRP Manholes (Standard & Backdrop) 2m GRP for Sewerage Network Zone 1 | 21d | 2026-02-25 A | 2026-11-08 | MOD-SWN-MH-125 SS+5d, MOD-SWN-PW-1425 | 95% | 1.05d | 2026-03-22 | 2026-04-12 | 110.57d | 0d | 7-Day Workweek-9 | Contract Price Original Scope [5691.17]; Boom Truck Operator [1.95 h]; Laborer [3.9 h] | 5,691.17 | 5,406.61 | SW |
| MOD-SWN-PW-1405 |  | Backfilling 2m GRP for Sewerage Network Zone 1 | 15d | 2026-10-30 A | 2026-11-28 | MOD-SWN-PW-1435, MOD-GEI-PL-001 | 5% | 14.25d | 2026-10-30 | 2026-11-14 | 110.57d | 50.22d | 7-Day Workweek-9 | Contract Price Original Scope [2529.41]; Compactor Operator [0.02 h]; Laborer [0.04 h] | 2,529.41 | 126.47 | SW |
| MOD-SWN-PW-1435 |  | Test 2m GRP for Sewerage Network Zone 1 | 5d | 2026-11-08 | 2026-11-13 | MOD-SWN-MH-135 |  |  |  |  | 110.57d | 0d | 7-Day Workweek-9 | Contract Price Original Scope [1264.7]; Pipefitter [10 h]; Technician [10 h] | 1,264.7 |  | SW |
|  | 5 | **Pumping Stations** |  | 2026-01-01 | 2027-04-18 |  |  |  |  |  |  |  |  |  |  |  |  |
|  | 9 | **Perimeter Walls & Gates** |  | 2026-04-01 | 2026-10-26 |  |  |  |  |  |  |  |  |  |  |  |  |
| MOD-SWN-PS-045 |  | Perimeter wall – PS1 for Sewerage Network Zone 1 | 21d | 2026-04-01 A | 2026-06-17 A | A102810, A102340 | 100% |  | 2026-06-04 | 2026-06-29 |  |  |  | Contract Price Original Scope [188040]; Excavator Operator [310.01 h]; Mason [620.01 h]; Laborer [620.01 h] | 188,040.29 | 188,040.29 | PS |
| MOD-SWN-PS-046 |  | Perimeter wall – PS2 for Sewerage Network Zone 1 | 21d | 2026-04-14 A | 2026-06-17 A | MOD-SWN-PS-045, A102810, A103760 | 100% |  | 2026-06-29 | 2026-07-23 |  |  |  | Contract Price Original Scope [165917]; Excavator Operator [279.98 h]; Mason [559.96 h]; Laborer [559.96 h] | 165,917.29 | 165,917.29 | PS |
| MOD-SWN-PS-049 |  | Main entrance gates – Each PS for Sewerage Network Zone 1 | 10d | 2026-07-30 A | 2026-10-26 A | MOD-SWN-PS-046 | 100% |  | 2026-08-08 | 2026-08-18 |  |  |  | Contract Price Original Scope [27650.4]; Crane Operator [50 h]; Welder [50 h]; Steel Fixer [100 h] | 27,650.44 | 27,650.44 | PS |
| MOD-SWN-PS-050 |  | Personal entrance gate – Each PS for Sewerage Network Zone 1 | 4d | 2026-07-31 A | 2026-10-25 A | MOD-SWN-PS-049 SS | 100% |  | 2026-08-08 | 2026-08-11 |  |  |  | Contract Price Original Scope [9984.81]; Crane Operator [20 h]; Welder [20 h]; Steel Fixer [40 h] | 9,984.81 | 9,984.81 | PS |

| ID | WBS | Activity | Duration | Start | Finish | Predecessors | Total float | Free float | Resources | Cost | MOD-2937 |
| --- | --- | --- | --- | --- | --- | --- | --- | --- | --- | --- | --- |
|  | 1 | **Sewage Pumps and MCC System** |  | 2026-12-03 | 2027-01-24 |  |  |  |  |  |  |
| MOD-SWN-PS-002 |  | Sewage pumps incl. MCC, control panel, flow meters, transducers, switches, GRP piping, testing & installation – PS1 for | 11d | 2026-12-03 | 2026-12-16 | A102240, A102170, A1570, MOD-SWN-PS-050, A102700, A102640, A102620 | 27.35d | 0d | Contract Price Original Scope [624070]; Crane Operator [3 h]; Electrician [6 h]; Plumber [3 h] | 624,069.72 | PS |
| MOD-SWN-PS-003 |  | Sewage pumps (2x86 l/s, 1x325 l/s) incl. MCC – PS1 for Sewerage Network Zone 1 | 12d | 2026-12-16 | 2026-12-30 | MOD-SWN-PS-002, A102240, A102170, A102700, A102640 | 27.35d | 0d | Contract Price Original Scope [723921]; Crane Operator [121.05 h]; Electrician [242.11 h]; Plumber [121.05 h] | 723,920.83 | PS |
| MOD-SWN-PS-004 |  | Sewage pumps (2x55 l/s) incl. MCC – PS2 for Sewerage Network Zone 1 | 21d | 2026-12-30 | 2027-01-24 | MOD-SWN-PS-003, A102240, A102170, A102700, A102640 | 27.35d | 56.56d | Contract Price Original Scope [302434]; Crane Operator [500 h]; Electrician [1000 h]; Plumber [500 h] | 302,433.87 | PS |
|  | 2 | **Odor Control System** |  | 2027-01-04 | 2027-02-02 |  |  |  |  |  |  |
| MOD-SWN-PS-0081 |  | Odor control system – All stations (PS1) for Sewerage Network Zone 1 | 10d | 2027-01-04 | 2027-01-16 | MOD-SWN-PS-043, A102180, A102720 | -29.21d | 0d | Contract Price Original Scope [138255]; Crane Operator [57.47 h]; Plumber [57.47 h] | 138,255.26 | PS |
| MOD-SWN-PS-0082 |  | Odor control system – All stations (PS2) for Sewerage Network Zone 1 | 15d | 2027-01-16 | 2027-02-02 | MOD-SWN-PS-0081, A102180, A102720 | 18.79d | 48d | Contract Price Original Scope [138255]; Crane Operator [57.47 h]; Plumber [57.47 h] | 138,255.26 | PS |
|  | 3 | **In-Line Booster Stations** |  | 2027-01-16 | 2027-04-18 |  |  |  |  |  |  |
| MOD-SWN-PS-010 |  | In-Line Booster Stations - Civil Works for Sewerage Network Zone 1 | 21d | 2027-01-16 | 2027-02-11 | MOD-SWN-PS-0081 | -29.21d | 0d | Contract Price Original Scope [656073]; Crane Operator [420 h]; Laborer [1680 h] | 656,073.36 | PS |
| MOD-SWN-PS-1164 |  | In-Line Booster Stations - Mechanical Works for Sewerage Network Zone 1 | 21d | 2027-02-11 | 2027-03-24 | MOD-SWN-PS-010 | -29.21d | 0d | Contract Price Original Scope [656073] | 656,073.36 | PS |
| MOD-SWN-PS-1174 |  | In-Line Booster Stations - Electrical Works for Sewerage Network Zone 1 | 21d | 2027-03-24 | 2027-04-18 | MOD-SWN-PS-1164 | -29.21d | 0d | Contract Price Original Scope [656073] | 656,073.36 | PS |
|  | 7 | **Engine/Motor Control Center Buildings** |  | 2026-11-07 | 2026-11-15 |  |  |  |  |  |  |
| MOD-SWN-PS-038 |  | MCC Building – PS1 for Sewerage Network Zone 1 | 1d | 2026-11-07 | 2026-11-07 | MOD-SWN-PS-045 | 31.6d | 0d | Contract Price Original Scope [3888.46]; Crane Operator [10 h]; Carpenter [10 h]; Electrician [20 h] | 3,888.46 | PS |
| MOD-SWN-PS-039 |  | MCC Building – PS2 for Sewerage Network Zone 1 | 7d | 2026-11-08 | 2026-11-15 | MOD-SWN-PS-038, MOD-SWN-PS-046 | 55.6d | 24d | Contract Price Original Scope [42052.7]; Crane Operator [72.73 h]; Carpenter [72.73 h]; Electrician [145.45 h] | 42,052.73 | PS |
|  | 4 | **Valves and Fittings (General Supply & Installation)** |  | 2026-12-03 | 2026-12-09 |  |  |  |  |  |  |
| MOD-SWN-PS-012 |  | Valves, fittings & accessories – PS1 for Sewerage Network Zone 1 | 2d | 2026-12-03 | 2026-12-06 | MOD-SWN-PS-050, A102620 | 66.35d | 0d | Contract Price Original Scope [6720.76] | 6,720.76 | PS |
| MOD-SWN-PS-013 |  | 35mm raked bar SS 316 mesh – PS1 for Sewerage Network Zone 1 | 1d | 2026-12-06 | 2026-12-07 | MOD-SWN-PS-012 | 66.35d | 0d | Contract Price Original Scope [4838.91]; Welder [10 h]; Steel Fixer [20 h] | 4,838.91 | PS |
| MOD-SWN-PS-014 |  | Valves, fittings, flow meters – PS2 for Sewerage Network Zone 1 | 2d | 2026-12-07 | 2026-12-09 | MOD-SWN-PS-013, A1570, A102620 | 66.35d | 95.56d | Contract Price Original Scope [11924.6]; Laborer [20 h]; Plumber [40 h] | 11,924.59 | PS |
|  | 5 | **Tank with Canopy** |  | 2027-02-11 | 2027-03-15 |  |  |  |  |  |  |
| MOD-SWN-PS-019 |  | Tank with canopy (per specs/drawings) - PS1 for Sewerage Network Zone 1 | 13d | 2027-02-11 | 2027-03-15 | MOD-SWN-PS-010 | -0.21d | 29d | Contract Price Original Scope [748883]; Crane Operator [130.19 h]; Welder [130.19 h]; Steel Fixer [260.38 h] | 748,883.49 | PS |
|  | 6 | **Pump Well and Valve Chambers** |  | 2026-11-08 | 2027-01-18 |  |  |  |  |  |  |
| MOD-SWN-PS-022 |  | Pump well & valve chamber structure – PS1 (2 wells, 12m deep) for Sewerage Network Zone 1 | 13d | 2026-11-08 | 2026-11-22 | MOD-SWN-PS-038, A102760, A102810 | 31.6d | 0d | Contract Price Original Scope [74197.1]; Excavator Operator [127.27 h]; Mason [254.55 h]; Laborer [254.55 h] | 74,197.09 | PS |
| MOD-SWN-PS-023 |  | Concrete wall (5x5x1m) inside PS1 well for Sewerage Network Zone 1 | 7d | 2026-11-23 | 2026-11-30 | MOD-SWN-PS-022, A103770 | 31.6d | 0d | Contract Price Original Scope [41284.7]; Mason [139.86 h]; Laborer [139.86 h] | 41,284.68 | PS |
| MOD-SWN-PS-027 |  | Pump well & valve chamber structure – PS2 (2 wells, 3m each, 9m depth) for Sewerage Network Zone 1 | 14d | 2026-11-23 | 2026-12-08 | MOD-SWN-PS-022, A102760, A102810 | 35.6d | 4d | Contract Price Original Scope [81656.8]; Excavator Operator [140 h]; Mason [280 h]; Laborer [280 h] | 81,656.84 | PS |
| MOD-SWN-PS-024 |  | 35 mm raked bar SS 316 network chamber PS1 for Sewerage Network Zone 1 | 1d | 2026-12-01 | 2026-12-01 | MOD-SWN-PS-023 | 31.6d | 0d | Contract Price Original Scope [2688.28]; Welder [10 h]; Steel Fixer [20 h] | 2,688.28 | PS |
| MOD-SWN-PS-025 |  | Valve chamber – PS1 for Sewerage Network Zone 1 | 6d | 2026-12-02 | 2026-12-08 | MOD-SWN-PS-024, A102760 | 31.6d | 0d | Contract Price Original Scope [34141.4]; Mason [121.74 h]; Laborer [121.74 h] | 34,141.39 | PS |
| MOD-SWN-PS-026 |  | Flow meter chamber – PS1 for Sewerage Network Zone 1 | 4d | 2026-12-09 | 2026-12-13 | MOD-SWN-PS-025, A102760 | 31.6d | 0d | Contract Price Original Scope [20216]; Mason [80 h]; Laborer [80 h] | 20,216.04 | PS |
| MOD-SWN-PS-028 |  | Valve chamber – PS2 for Sewerage Network Zone 1 | 16d | 2026-12-14 | 2026-12-31 | MOD-SWN-PS-027, MOD-SWN-PS-039, A102760, MOD-SWN-PS-026 | 31.6d | 0d | Contract Price Original Scope [97546.8]; Mason [800 h]; Laborer [800 h] | 97,546.82 | PS |
| MOD-SWN-PS-029 |  | Flow meter chamber – PS2 for Sewerage Network Zone 1 | 15d | 2027-01-02 | 2027-01-18 | MOD-SWN-PS-028, A102760 | 31.6d | 60.81d | Contract Price Original Scope [90972.2]; Mason [300 h]; Laborer [300 h] | 90,972.17 | PS |

| ID | WBS | Activity | Duration | Start | Finish | Predecessors | Complete | Remaining | Planned start | Planned finish | Total float | Free float | Calendar | Resources | Cost | Actual cost | MOD-2937 |
| --- | --- | --- | --- | --- | --- | --- | --- | --- | --- | --- | --- | --- | --- | --- | --- | --- | --- |
|  | 8 | **Odor Control System Base/Plinth** |  | 2026-11-26 | 2026-12-02 |  |  |  |  |  |  |  |  |  |  |  |  |
| MOD-SWN-PS-043 |  | Concrete plinth below odor control – All PSs for Sewerage Network Zone 1 | 6d | 2026-11-26 | 2026-12-02 | MOD-SWN-PS-061, A103770 |  |  |  |  | -1.4d | 27.81d |  | Contract Price Original Scope [16590.5]; Mason [59.97 h]; Laborer [59.97 h] | 16,590.51 |  | PS |
|  | 10 | **Lighting Works** |  | 2026-01-01 | 2026-12-03 |  |  |  |  |  |  |  |  |  |  |  |  |
| MOD-SWN-PS-052 |  | 250W Flood Light installation – Each PS for Sewerage Network Zone 1 | 13d | 2026-01-01 A | 2026-12-03 | MOD-SWN-PS-056 | 80% | 2.6d | 2026-05-13 | 2026-06-02 | 71d | 100.21d |  | Contract Price Original Scope [384043]; Boom Truck Operator [64.94 h]; Electrician [129.87 h] | 384,043.12 | 307,234.5 | PS |
|  | 11 | **Duct Works** |  | 2026-11-23 | 2026-11-30 |  |  |  |  |  |  |  |  |  |  |  |  |
| MOD-SWN-PS-054 |  | uPVC duct Track 1 – All PSs for Sewerage Network Zone 1 | 1d | 2026-11-23 | 2026-11-23 | MOD-SWN-PS-022, A1650 |  |  |  |  | 70.6d | 0d |  | Contract Price Original Scope [2760.41]; Laborer [5 h]; Plumber [10 h] | 2,760.41 |  | PS |
| MOD-SWN-PS-055 |  | uPVC duct Track 2 – All PSs for Sewerage Network Zone 1 | 2d | 2026-11-24 | 2026-11-25 | MOD-SWN-PS-054, A1650 |  |  |  |  | 70.6d | 0d |  | Contract Price Original Scope [3185.08]; Laborer [10 h]; Plumber [20 h] | 3,185.08 |  | PS |
| MOD-SWN-PS-056 |  | uPVC duct Track 8 – All PSs for Sewerage Network Zone 1 | 4d | 2026-11-26 | 2026-11-30 | MOD-SWN-PS-055, A1650 |  |  |  |  | 70.6d | 0d |  | Contract Price Original Scope [9274.58]; Laborer [20 h]; Plumber [40 h] | 9,274.58 |  | PS |
|  | 12 | **Grounding Works** |  | 2026-12-01 | 2026-12-03 |  |  |  |  |  |  |  |  |  |  |  |  |
| MOD-SWN-PS-058 |  | Grounding pit – Each PS for Sewerage Network Zone 1 | 1d | 2026-12-01 | 2026-12-01 | MOD-SWN-PS-056 |  |  |  |  | 70.6d | 0d |  | Contract Price Original Scope [1690.17]; Laborer [5 h]; Electrician [10 h] | 1,690.17 |  | PS |
| MOD-SWN-PS-059 |  | 600x600 Cable pull pit – All PSs for Sewerage Network Zone 1 | 2d | 2026-12-02 | 2026-12-03 | MOD-SWN-PS-058 |  |  |  |  | 70.6d | 99.81d |  | Contract Price Original Scope [5913.15]; Laborer [10 h]; Electrician [20 h] | 5,913.15 |  | PS |
|  | 13 | **Landscaping / Interlocking Tiles** |  | 2026-11-07 | 2026-11-30 |  |  |  |  |  |  |  |  |  |  |  |  |
| MOD-SWN-PS-061 |  | Building perimeter interlock tiles for Sewerage Network Zone 1 | 17d | 2026-11-07 | 2026-11-25 | MOD-SWN-PS-050, MOD-SWN-PS-045 |  |  |  |  | -1.4d | 0d |  | Contract Price Original Scope [50952.8]; Mason [154.55 h]; Laborer [154.55 h] | 50,952.81 |  | PS |
| MOD-SWN-PS-062 |  | Entrance road paving tiles for Sewerage Network Zone 1 | 4d | 2026-11-26 | 2026-11-30 | MOD-SWN-PS-061 |  |  |  |  | 73.6d | 102.81d |  | Contract Price Original Scope [10721.9]; Mason [40.87 h]; Laborer [40.87 h] | 10,721.87 |  | PS |
|  | 14 | **Pumping Station Internal Drainage Network** |  | 2026-11-07 | 2026-11-14 |  |  |  |  |  |  |  |  |  |  |  |  |
| MOD-SWN-PS-064 |  | Internal surface drainage channels for Sewerage Network Zone 1 | 7d | 2026-11-07 | 2026-11-14 | MOD-SWN-PS-045, MOD-SWN-PS-046 |  |  |  |  | 87.6d | 116.81d |  | Contract Price Original Scope [20279]; Mason [70 h]; Laborer [70 h] | 20,278.98 |  | PS |
|  | 12 | **Rainwater Drainage Network Zone 1** |  | 2025-10-01 | 2026-12-07 |  |  |  |  |  |  |  |  |  |  |  |  |
|  | 1 | **Pipe Laying Works** |  | 2025-10-01 | 2026-11-15 |  |  |  |  |  |  |  |  |  |  |  |  |
|  | 2 | **Supply & Installation of uPVC Pipes (250–300mm dia)** |  | 2025-10-01 | 2026-11-10 |  |  |  |  |  |  |  |  |  |  |  |  |
| MOD-RWN-PL-913 |  | Excavation to required depth UPVC for Rainwater Drainage Network Zone 1 | 21d | 2025-10-01 A | 2026-11-08 | A102500, A102190, A1600 | 95% | 1.05d | 2025-12-11 | 2025-12-31 | -111.25d | 0d | 7-Day Workweek-9 | Contract Price Original Scope [150778]; Excavator Operator [344.83 h]; Laborer [689.66 h] | 150,777.85 | 143,238.96 | RW |
| MOD-RWN-PL-923 |  | Lean Concrete / Bedding UPVC for Rainwater Drainage Network Zone 1 | 5d | 2025-10-05 A | 2026-11-08 | MOD-RWN-PL-913 | 95% | 0.25d | 2026-01-13 | 2026-01-18 | -111.25d | 0d | 7-Day Workweek-9 | Contract Price Original Scope [37694.5]; Laborer [160 h] | 37,694.46 | 35,809.74 | RW |
| MOD-RWN-PL-933 |  | Laying of uPVC pipe UPVC for Rainwater Drainage Network Zone 1 | 19d | 2025-10-06 A | 2026-11-09 | MOD-RWN-PL-923 | 95% | 0.95d | 2026-01-18 | 2026-02-06 | -111.25d | 0d | 7-Day Workweek-9 | Contract Price Original Scope [339250]; Excavator Operator [125.03 h]; Pipefitter [250.07 h]; Laborer [250.07 h] | 339,250.17 | 322,287.66 | RW |
| MOD-RWN-PL-953 |  | Test (Pressure-slope) UPVC for Rainwater Drainage Network Zone 1 | 3d | 2026-01-07 A | 2026-11-09 | MOD-RWN-PL-933 | 90% | 0.3d | 2026-02-14 | 2026-02-17 | -111.25d | 0d | 7-Day Workweek-9 | Contract Price Original Scope [75388.9]; Pipefitter [10 h]; Technician [10 h] | 75,388.93 | 67,850.03 | RW |
| MOD-RWN-PL-943 |  | Coating / Wrapping UPVC for Rainwater Drainage Network Zone 1 | 2d | 2026-01-08 A | 2026-11-09 | MOD-RWN-PL-953 | 90% | 0.2d | 2026-02-17 | 2026-02-19 | -105.81d | 27.3d | 7-Day Workweek-9 | Contract Price Original Scope [75388.9]; Laborer [40 h] | 75,388.93 | 67,850.03 | RW |
| MOD-RWN-PL-963 |  | Backfilling & Warning Tape UPVC for Rainwater Drainage Network Zone 1 | 8d | 2026-01-10 A | 2026-11-10 | MOD-RWN-PL-953, MOD-GEI-PL-001 | 85% | 1.2d | 2026-02-17 | 2026-02-25 | -106.81d | 26.3d | 7-Day Workweek-9 | Contract Price Original Scope [75388.9]; Compactor Operator [0.02 h]; Laborer [0.04 h] | 75,388.93 | 64,080.59 | RW |

| ID | WBS | Activity | Duration | Start | Finish | Predecessors | Complete | Remaining | Planned start | Planned finish | Total float | Free float | Calendar | Resources | Cost | Actual cost | MOD-2937 |
| --- | --- | --- | --- | --- | --- | --- | --- | --- | --- | --- | --- | --- | --- | --- | --- | --- | --- |
|  | 3 | **Supply & Installation of GRP Pipes (350–800mm dia)** |  | 2025-12-15 | 2026-08-16 |  |  |  |  |  |  |  |  |  |  |  |  |
| MOD-RWN-PL-973 |  | Excavate short trench paths GRP for Rainwater Drainage Network Zone 1 | 21d | 2025-12-15 A | 2026-04-01 A | A102500, A102190 | 100% |  | 2026-01-10 | 2026-01-31 |  |  | 7-Day Workweek-9 | Contract Price Original Scope [68891.8]; Excavator Operator [344.83 h]; Laborer [689.66 h] | 68,891.76 | 68,891.76 | RW |
| MOD-RWN-PL-983 |  | Lean Concrete / bedding material GRP for Rainwater Drainage Network Zone 1 | 8d | 2025-12-23 A | 2026-07-05 A | MOD-RWN-PL-973 | 100% |  | 2026-01-31 | 2026-02-08 |  |  | 7-Day Workweek-9 | Contract Price Original Scope [17222.9]; Laborer [160 h] | 17,222.94 | 17,222.94 | RW |
| MOD-RWN-PL-993 |  | Lay & connect GRP for Rainwater Drainage Network Zone 1 | 21d | 2025-12-29 A | 2026-07-08 A | MOD-RWN-PL-983 | 100% |  | 2026-02-08 | 2026-03-01 |  |  | 7-Day Workweek-9 | Contract Price Original Scope [155006]; Excavator Operator [29.59 h]; Pipefitter [59.19 h]; Laborer [59.19 h] | 155,006.47 | 155,006.47 | RW |
| MOD-RWN-PL-1003 |  | Test (Pressure-slope) GRP for Rainwater Drainage Network Zone 1 | 11d | 2026-01-09 A | 2026-08-15 A | MOD-RWN-PL-993 | 100% |  | 2026-02-18 | 2026-03-01 |  |  | 7-Day Workweek-9 | Contract Price Original Scope [34445.9]; Pipefitter [10 h]; Technician [10 h] | 34,445.88 | 34,445.88 | RW |
| MOD-RWN-PL-1073 |  | Coating / Wrapping GRP for Rainwater Drainage Network Zone 1 | 21d | 2026-01-10 A | 2026-08-16 A | MOD-RWN-PL-1003 | 100% |  | 2026-03-01 | 2026-03-22 |  |  | 7-Day Workweek-9 | Contract Price Original Scope [34445.9]; Laborer [420 h] | 34,445.88 | 34,445.88 | RW |
| MOD-RWN-PL-1013 |  | Backfilling & compaction GRP for Rainwater Drainage Network Zone 1 | 10d | 2026-01-11 A | 2026-08-16 A | MOD-RWN-PL-1003, MOD-RWN-PL-1073, MOD-GEI-PL-001 | 100% |  | 2026-01-11 | 2026-01-20 |  |  | 7-Day Workweek-9 | Contract Price Original Scope [34445.9]; Compactor Operator [0.02 h]; Laborer [0.04 h] | 34,445.88 | 34,445.88 | RW |
|  | 4 | **uPVC Connection Pipes (150mm dia)** |  | 2025-12-15 | 2026-11-15 |  |  |  |  |  |  |  |  |  |  |  |  |
| MOD-RWN-PL-1023 |  | Excavate short trench paths UPVC Con. for Rainwater Drainage Network Zone 1 | 5d | 2025-12-15 A | 2026-01-13 A | A102500, A102190 | 100% |  | 2026-01-10 | 2026-01-15 |  |  | 7-Day Workweek-9 | Contract Price Original Scope [16851.4]; Excavator Operator [344.83 h]; Laborer [689.66 h] | 16,851.43 | 16,851.43 | RW |
| MOD-RWN-PL-1033 |  | Lean Concrete / bedding material UPVC Con. for Rainwater Drainage Network Zone 1 | 3d | 2025-12-23 A | 2026-06-18 A | MOD-RWN-PL-1023 | 100% |  | 2026-01-15 | 2026-01-18 |  |  | 7-Day Workweek-9 | Contract Price Original Scope [4212.86]; Laborer [160 h] | 4,212.86 | 4,212.86 | RW |
| MOD-RWN-PL-1043 |  | Lay & connect UPVC Con. for Rainwater Drainage Network Zone 1 | 8d | 2025-12-29 A | 2026-11-09 | MOD-RWN-PL-1033, MOD-RWN-PL-953 SS | 92% | 0.64d | 2026-02-14 | 2026-02-22 | -111.25d | 0d | 7-Day Workweek-9 | Contract Price Original Scope [37915.7]; Excavator Operator [114.14 h]; Pipefitter [228.28 h]; Laborer [228.28 h] | 37,915.71 | 34,882.45 | RW |
| MOD-RWN-PL-1053 |  | Test (Pressure-slope) UPVC Con. for Rainwater Drainage Network Zone 1 | 3d | 2026-01-08 A | 2026-11-10 | MOD-RWN-PL-1043 | 80% | 0.6d | 2026-01-08 | 2026-01-10 | -111.25d | 0d | 7-Day Workweek-9 | Contract Price Original Scope [8425.71]; Pipefitter [10 h]; Technician [10 h] | 8,425.71 | 6,740.57 | RW |
| MOD-RWN-PL-1083 |  | Coating / Wrapping UPVC Con. for Rainwater Drainage Network Zone 1 | 21d | 2026-01-10 A | 2026-11-14 | MOD-RWN-PL-1053 | 80% | 4.2d | 2026-01-10 | 2026-01-30 | -111.25d | 0d | 7-Day Workweek-9 | Contract Price Original Scope [8425.71]; Laborer [420 h] | 8,425.71 | 6,740.57 | RW |
| MOD-RWN-PL-1063 |  | Backfilling & compaction UPVC Con. for Rainwater Drainage Network Zone 1 | 2d | 2026-01-11 A | 2026-11-15 | MOD-RWN-PL-1053, MOD-RWN-PL-1083, MOD-GEI-PL-001 | 75% | 0.5d | 2026-01-11 | 2026-01-12 | -111.25d | 21.86d | 7-Day Workweek-9 | Contract Price Original Scope [8425.71]; Compactor Operator [0.02 h]; Laborer [0.04 h] | 8,425.71 | 6,319.29 | RW |
|  | 5 | **Precast Concrete Box Culverts** |  | 2026-04-01 | 2026-12-06 |  |  |  |  |  |  |  |  |  |  |  |  |
|  | 1 | **Box Culverts (500x500mm to 3500x800mm)** |  | 2026-04-01 | 2026-12-01 |  |  |  |  |  |  |  |  |  |  |  |  |
| MOD-RWN-PC-002 |  | Survey and layout alignment Box culvert for Rainwater Drainage Network Zone 1 | 3d | 2026-04-01 A | 2026-04-08 A | MOD-RWN-PL-973 SS | 100% |  | 2026-05-09 | 2026-05-11 |  |  |  | Contract Price Original Scope [13250.4]; Laborer [69.93 h]; Surveyor [69.93 h] | 13,250.44 | 13,250.44 | RW |
| MOD-RWN-PC-504 |  | Setting Benchmark Box culvert for Rainwater Drainage Network Zone 1 | 2d | 2026-04-04 A | 2026-04-10 A | MOD-RWN-PC-002 | 100% |  | 2026-05-12 | 2026-05-13 |  |  |  | Contract Price Original Scope [13250.4]; Laborer [375 h]; Surveyor [375 h] | 13,250.44 | 13,250.44 | RW |
| MOD-RWN-PC-514 |  | Cleaning Box culvert for Rainwater Drainage Network Zone 1 | 5d | 2026-04-11 A | 2026-04-15 A | MOD-RWN-PC-504 | 100% |  | 2026-05-14 | 2026-05-19 |  |  |  | Contract Price Original Scope [13250.4]; Laborer [1050 h] | 13,250.44 | 13,250.44 | RW |
| MOD-RWN-PC-003 |  | Excavation to required depth Box culvert for Rainwater Drainage Network Zone 1 | 5d | 2026-04-18 A | 2026-11-07 | MOD-RWN-PC-002, MOD-RWN-PC-524, A1600 | 85% | 0.75d | 2026-05-23 | 2026-06-01 | -113.21d | 0d |  | Contract Price Original Scope [530018]; Excavator Operator [29.23 h]; Laborer [58.47 h] | 530,017.55 | 450,514.92 | RW |
| MOD-RWN-PC-524 |  | Testing Box culvert for Rainwater Drainage Network Zone 1 | 2d | 2026-04-18 A | 2026-04-21 A | MOD-RWN-PC-514 | 100% |  | 2026-05-20 | 2026-05-21 |  |  |  | Contract Price Original Scope [13250.4]; Laborer [1575 h] | 13,250.44 | 13,250.44 | RW |
| MOD-RWN-PC-004 |  | Dewatering and trench shoring Box culvert for Rainwater Drainage Network Zone 1 | 5d | 2026-04-22 A | 2026-11-08 | MOD-RWN-PC-003 | 80% | 1d | 2026-05-18 | 2026-05-24 | -113.21d | 0d |  | Contract Price Original Scope [424014]; Pump Operator [303.03 h]; Laborer [303.03 h] | 424,014.04 | 339,211.24 | RW |
| MOD-RWN-PC-005 |  | Bedding preparation (gravel/lean concrete) Box culvert for Rainwater Drainage Network Zone 1 | 4d | 2026-04-24 A | 2026-11-09 | MOD-RWN-PC-004 | 70% | 1.2d | 2026-05-24 | 2026-06-02 | -113.21d | 0d |  | Contract Price Original Scope [159005]; Laborer [160 h] | 159,005.27 | 111,303.69 | RW |
| MOD-RWN-PC-006 |  | Installation of box culvert units Box culvert for Rainwater Drainage Network Zone 1 | 8d | 2026-04-28 A | 2026-11-14 | MOD-RWN-PC-005 FS+0.9d | 70% | 2.4d | 2026-06-03 | 2026-06-13 | -113.21d | 0d |  | Contract Price Original Scope [636021]; Crane Operator [149.25 h]; Laborer [597.01 h] | 636,021.07 | 445,214.75 | RW |
| MOD-RWN-PC-007 |  | Alignment and joint sealing Box culvert for Rainwater Drainage Network Zone 1 | 4d | 2026-05-05 A | 2026-11-16 | MOD-RWN-PC-006 | 50% | 2d | 2026-06-16 | 2026-06-21 | -108.31d | 0d |  | Contract Price Original Scope [74202.5]; Mason [80 h] | 74,202.46 | 37,101.23 | RW |
| MOD-RWN-PC-008 |  | Construct headwalls/wing walls (if needed) Box culvert for Rainwater Drainage Network Zone 1 | 5d | 2026-11-16 | 2026-11-22 | MOD-RWN-PC-007, A102810 |  |  |  |  | -108.31d | 0d |  | Contract Price Original Scope [106004]; Mason [444.44 h]; Laborer [444.44 h] | 106,003.51 |  | RW |
| MOD-RWN-PC-009 |  | Backfilling and compaction Box culvert for Rainwater Drainage Network Zone 1 | 5d | 2026-11-22 | 2026-11-28 | MOD-RWN-PC-008, MOD-GEI-PL-001 |  |  |  |  | -108.31d | 0d |  | Contract Price Original Scope [74202.5] | 74,202.46 |  | RW |
| MOD-RWN-PC-010 |  | Surface finishing Box culvert for Rainwater Drainage Network Zone 1 | 3d | 2026-11-28 | 2026-12-01 | MOD-RWN-PC-009 |  |  |  |  | -108.31d | 4.9d |  | Contract Price Original Scope [63602.1]; Laborer [60.06 h] | 63,602.11 |  | RW |

| ID | WBS | Activity | Duration | Start | Finish | Predecessors | Complete | Remaining | Planned start | Planned finish | Total float | Free float | Resources | Cost | Actual cost | MOD-2937 |
| --- | --- | --- | --- | --- | --- | --- | --- | --- | --- | --- | --- | --- | --- | --- | --- | --- |
|  | 2 | **Tube Culverts at Road Intersections** |  | 2026-04-01 | 2026-11-25 |  |  |  |  |  |  |  |  |  |  |  |
| MOD-RWN-PC-012 |  | Traffic control setup Tube culvert for Rainwater Drainage Network Zone 1 | 2d | 2026-04-01 A | 2026-04-05 A | MOD-RWN-PC-003, MOD-RWN-PC-003 FF | 100% |  | 2026-05-11 | 2026-05-13 |  |  | Contract Price Original Scope [4474.41]; Flaggers [40 h] | 4,474.41 | 4,474.41 | RW |
| MOD-RWN-PC-013 |  | Trench excavation under road Tube culvert for Rainwater Drainage Network Zone 1 | 10d | 2026-04-08 A | 2026-04-30 A | MOD-RWN-PC-012, A102790 | 100% |  | 2026-05-13 | 2026-05-25 |  |  | Contract Price Original Scope [25056.7] | 25,056.68 | 25,056.68 | RW |
| MOD-RWN-PC-014 |  | Pipe bedding and twin pipe alignment Tube culvert for Rainwater Drainage Network Zone 1 | 6d | 2026-05-12 A | 2026-11-10 | MOD-RWN-PC-013 | 50% | 3d | 2026-06-10 | 2026-06-16 | -103.81d | 0d | Contract Price Original Scope [13423.2]; Laborer [119.76 h] | 13,423.22 | 6,711.61 | RW |
| MOD-RWN-PC-015 |  | Pipe laying and jointing Tube culvert for Rainwater Drainage Network Zone 1 | 10d | 2026-05-24 A | 2026-11-16 | MOD-RWN-PC-014, A102740, A1650 | 50% | 5d | 2026-06-17 | 2026-06-28 | -103.81d | 0d | Contract Price Original Scope [118124]; Crane Operator [19.75 h]; Laborer [59.27 h] | 118,124.35 | 59,062.17 | RW |
| MOD-RWN-PC-016 |  | Backfilling and road reinstatement Tube culvert for Rainwater Drainage Network Zone 1 | 8d | 2026-11-16 | 2026-11-25 | MOD-RWN-PC-015, MOD-GEI-PL-001 |  |  |  |  | -103.81d | 9.4d | Contract Price Original Scope [17897.6] | 17,897.63 |  | RW |
|  | 3 | **Box Culverts at Road Intersections** |  | 2026-04-13 | 2026-12-06 |  |  |  |  |  |  |  |  |  |  |  |
| MOD-RWN-PC-018 |  | Traffic diversion and barricading for Rainwater Drainage Network Zone 1 | 15d | 2026-04-13 A | 2026-04-21 A | MOD-RWN-PC-012 | 100% |  | 2026-05-13 | 2026-06-04 |  |  | Contract Price Original Scope [360.68]; Flaggers [298.51 h] | 360.68 | 360.68 | RW |
| MOD-RWN-PC-019 |  | Deep trench excavation with shoring for Rainwater Drainage Network Zone 1 | 1d | 2026-05-16 A | 2026-11-07 | MOD-RWN-PC-018 | 82% | 0.18d | 2026-06-04 | 2026-06-06 | -112.74d | 0d | Contract Price Original Scope [2019.79] | 2,019.79 | 1,656.23 | RW |
| MOD-RWN-PC-020 |  | Place bedding material for Rainwater Drainage Network Zone 1 | 1d | 2026-09-05 A | 2026-11-08 | MOD-RWN-PC-019 | 25% | 0.75d | 2026-09-05 | 2026-09-06 | -112.74d | 0d | Contract Price Original Scope [1082.03]; Laborer [400 h] | 1,082.03 | 270.51 | RW |
| MOD-RWN-PC-021 |  | Install precast box culvert for Rainwater Drainage Network Zone 1 | 4d | 2026-11-08 | 2026-11-12 | MOD-RWN-PC-020 |  |  |  |  | -112.74d | 0d | Contract Price Original Scope [9377.62]; Crane Operator [16 h]; Laborer [64 h] | 9,377.62 |  | RW |
| MOD-RWN-PC-022 |  | Construct connection chambers (if needed) for Rainwater Drainage Network Zone 1 | 1d | 2026-11-12 | 2026-11-14 | MOD-RWN-PC-021, A102810 |  |  |  |  | -112.74d | 0d | Contract Price Original Scope [1082.03]; Mason [20 h]; Laborer [20 h] | 1,082.03 |  | RW |
| MOD-RWN-PC-023 |  | Joint treatment and testing for Rainwater Drainage Network Zone 1 | 10d | 2026-11-14 | 2026-11-25 | MOD-RWN-PC-022 |  |  |  |  | -112.74d | 0d | Contract Price Original Scope [288.54]; Mason [20 h] | 288.54 |  | RW |
| MOD-RWN-PC-024 |  | Backfilling and surface reinstatement for Rainwater Drainage Network Zone 1 | 9d | 2026-11-25 | 2026-12-06 | MOD-RWN-PC-023, MOD-GEI-PL-001 |  |  |  |  | -112.74d | 0.47d | Contract Price Original Scope [216.41] | 216.41 |  | RW |
|  | 4 | **Manholes** |  | 2026-01-01 | 2026-12-07 |  |  |  |  |  |  |  |  |  |  |  |
|  | 1 | **Circular GRP Manholes (1200–1800mm dia)** |  | 2026-01-01 | 2026-11-28 |  |  |  |  |  |  |  |  |  |  |  |
| MOD-RWN-MH-002 |  | Excavate to full manhole depth Circular Manhole for Rainwater Drainage Network Zone 1 | 5d | 2026-01-01 A | 2026-07-16 A | MOD-RWN-PC-006 SS | 100% |  | 2026-02-16 | 2026-02-26 |  |  | Contract Price Original Scope [16009.6]; Excavator Operator [28 h]; Laborer [56 h] | 16,009.61 | 16,009.61 | RW |
| MOD-RWN-MH-003 |  | Dewatering and safety barriers Circular Manhole for Rainwater Drainage Network Zone 1 | 10d | 2026-01-01 A | 2026-11-12 | MOD-RWN-MH-002 | 85% | 1.5d | 2026-02-25 | 2026-03-17 | -105.16d | 0d | Contract Price Original Scope [139512]; Carpenter [100 h]; Laborer [100 h] | 139,512.34 | 118,585.49 | RW |
| MOD-RWN-MH-004 |  | Concrete base construction Circular Manhole for Rainwater Drainage Network Zone 1 | 5d | 2026-01-03 A | 2026-11-14 | MOD-RWN-MH-003, A103770 | 70% | 1.5d | 2026-03-17 | 2026-03-29 | -105.16d | 0d | Contract Price Original Scope [137225]; Carpenter [20 h]; Laborer [40 h] | 137,225.25 | 96,057.68 | RW |
| MOD-RWN-MH-005 |  | Install GRP manhole shaft sections Circular Manhole for Rainwater Drainage Network Zone 1 | 13d | 2026-01-06 A | 2026-11-19 | MOD-RWN-MH-004, A1480, A102600 | 65% | 4.55d | 2026-03-29 | 2026-04-13 | -105.16d | 0d | Contract Price Original Scope [114354]; Boom Truck Operator [52 h]; Laborer [104 h] | 114,354.38 | 74,330.35 | RW |
| MOD-RWN-MH-006 |  | Place slab and cover frame Circular Manhole for Rainwater Drainage Network Zone 1 | 6d | 2026-01-11 A | 2026-11-22 | MOD-RWN-MH-005 | 60% | 2.4d | 2026-04-14 | 2026-04-20 | -105.16d | 0d | Contract Price Original Scope [34306.3]; Boom Truck Operator [24 h]; Laborer [48 h] | 34,306.31 | 20,583.79 | RW |
| MOD-RWN-MH-007 |  | Waterproofing Circular Manhole for Rainwater Drainage Network Zone 1 | 5d | 2026-01-12 A | 2026-11-25 | MOD-RWN-MH-006 | 50% | 2.5d | 2026-04-21 | 2026-04-26 | -105.16d | 0d | Contract Price Original Scope [9148.35]; Carpenter [16 h]; Laborer [16 h] | 9,148.35 | 4,574.18 | RW |
| MOD-RWN-MH-008 |  | Backfilling and compaction Circular Manhole for Rainwater Drainage Network Zone 1 | 3d | 2026-01-13 A | 2026-11-28 | MOD-RWN-MH-007, MOD-GEI-PL-001 | 40% | 1.8d | 2026-04-27 | 2026-04-29 | -105.16d | 8.05d | Contract Price Original Scope [6861.26]; Compactor Operator [1.76 h]; Laborer [5.28 h] | 6,861.26 | 2,744.51 | RW |
|  | 3 | **Concrete Manholes for 1500x1500 Box Pipes** |  | 2026-01-01 | 2026-11-29 |  |  |  |  |  |  |  |  |  |  |  |
| MOD-RWN-MH-018 |  | Excavation Concrete Manhole 1.5x1.5 for Rainwater Drainage Network Zone 1 | 5d | 2026-01-01 A | 2026-07-17 A | MOD-RWN-PC-006 SS, A1600 | 100% |  | 2026-02-16 | 2026-02-26 |  |  | Contract Price Original Scope [24815.3]; Excavator Operator [3 h]; Laborer [5.99 h] | 24,815.3 | 24,815.3 | RW |
| MOD-RWN-MH-019 |  | Base slab and wall shuttering Concrete Manhole 1.5x1.5 for Rainwater Drainage Network Zone 1 | 7d | 2026-01-03 A | 2026-11-12 | MOD-RWN-MH-018 | 80% | 1.4d | 2026-01-03 | 2026-01-10 | -106.96d | 0d | Contract Price Original Scope [216248]; Carpenter [34.61 h]; Laborer [17.31 h] | 216,247.62 | 172,998.09 | RW |
| MOD-RWN-MH-020 |  | Wall reinforcement and casting Concrete Manhole 1.5x1.5 for Rainwater Drainage Network Zone 1 | 8d | 2026-02-15 A | 2026-11-15 | MOD-RWN-MH-019 | 75% | 2d | 2026-05-05 | 2026-05-14 | -106.96d | 0d | Contract Price Original Scope [212703]; Carpenter [30.29 h]; Laborer [60.57 h] | 212,702.58 | 159,526.93 | RW |
| MOD-RWN-MH-021 |  | Roof slab with openings Concrete Manhole 1.5x1.5 for Rainwater Drainage Network Zone 1 | 5d | 2026-02-17 A | 2026-11-16 | MOD-RWN-MH-020 | 65% | 1.75d | 2026-05-14 | 2026-05-20 | -106.96d | 0d | Contract Price Original Scope [177252]; Boom Truck Operator [51.92 h]; Laborer [103.84 h] | 177,252.15 | 115,213.9 | RW |
| MOD-RWN-MH-022 |  | Masonry/benching works inside Concrete Manhole 1.5x1.5 for Rainwater Drainage Network Zone 1 | 4d | 2026-02-21 A | 2026-11-18 | MOD-RWN-MH-021 | 50% | 2d | 2026-05-20 | 2026-05-25 | -106.96d | 0d | Contract Price Original Scope [53175.6]; Carpenter [56.25 h]; Laborer [56.25 h] | 53,175.64 | 26,587.82 | RW |
| MOD-RWN-MH-023 |  | Install cover and frame Concrete Manhole 1.5x1.5 for Rainwater Drainage Network Zone 1 | 6d | 2026-02-24 A | 2026-11-23 | MOD-RWN-MH-022, A1240, A102580 | 35% | 3.9d | 2026-05-25 | 2026-06-06 | -106.96d | 0d | Contract Price Original Scope [14180.2]; Boom Truck Operator [17.31 h]; Laborer [34.61 h] | 14,180.17 | 4,963.06 | RW |
| MOD-RWN-MH-024 |  | Backfill in layers Concrete Manhole 1.5x1.5 for Rainwater Drainage Network Zone 1 | 5d | 2026-11-23 | 2026-11-29 | MOD-RWN-MH-023, MOD-GEI-PL-001 |  |  |  |  | -106.96d | 6.25d | Contract Price Original Scope [10635.1]; Excavator Operator [12.98 h]; Compactor Operator [12.98 h]; Laborer [25.96 h] | 10,635.13 |  | RW |

| ID | WBS | Activity | Duration | Start | Finish | Predecessors | Complete | Remaining | Planned start | Planned finish | Total float | Free float | Resources | Cost | Actual cost | MOD-2937 |
| --- | --- | --- | --- | --- | --- | --- | --- | --- | --- | --- | --- | --- | --- | --- | --- | --- |
|  | 2 | **Concrete Manholes for 1000x1000 Box Pipes** |  | 2026-01-01 | 2026-12-07 |  |  |  |  |  |  |  |  |  |  |  |
| MOD-RWN-MH-010 |  | Excavation Concrete Manhole 1x1 for Rainwater Drainage Network Zone 1 | 6d | 2026-01-01 A | 2026-11-11 | MOD-RWN-PC-006 SS, A1600 | 85% | 0.9d | 2026-02-16 | 2026-02-28 | -113.21d | 0d | Contract Price Original Scope [13777.8]; Excavator Operator [2.77 h]; Laborer [5.54 h] | 13,777.76 | 11,711.09 | RW |
| MOD-RWN-MH-011 |  | Base slab and wall shuttering Concrete Manhole 1x1 for Rainwater Drainage Network Zone 1 | 4d | 2026-02-01 A | 2026-11-14 | MOD-RWN-MH-010 | 60% | 1.6d | 2026-04-07 | 2026-04-12 | -113.21d | 0d | Contract Price Original Scope [120063]; Carpenter [32 h]; Laborer [16 h] | 120,063.3 | 72,037.98 | RW |
| MOD-RWN-MH-012 |  | Wall reinforcement and casting Concrete Manhole 1x1 for Rainwater Drainage Network Zone 1 | 7d | 2026-04-01 A | 2026-11-17 | MOD-RWN-MH-011 | 60% | 2.8d | 2026-06-13 | 2026-06-21 | -113.21d | 0d | Contract Price Original Scope [118095]; Carpenter [28 h]; Laborer [56 h] | 118,095.04 | 70,857.03 | RW |
| MOD-RWN-MH-013 |  | Roof slab with openings Concrete Manhole 1x1 for Rainwater Drainage Network Zone 1 | 8d | 2026-04-06 A | 2026-11-22 | MOD-RWN-MH-012 | 50% | 4d | 2026-06-21 | 2026-06-30 | -113.21d | 0d | Contract Price Original Scope [98412.5]; Boom Truck Operator [48 h]; Laborer [96 h] | 98,412.54 | 49,206.27 | RW |
| MOD-RWN-MH-014 |  | Masonry/benching works inside Concrete Manhole 1x1 for Rainwater Drainage Network Zone 1 | 10d | 2026-04-21 A | 2026-11-29 | MOD-RWN-MH-013 | 40% | 6d | 2026-06-29 | 2026-07-11 | -113.21d | 0d | Contract Price Original Scope [29523.8]; Carpenter [52 h]; Laborer [52 h] | 29,523.76 | 11,809.5 | RW |
| MOD-RWN-MH-015 |  | Install cover and frame Concrete Manhole 1x1 for Rainwater Drainage Network Zone 1 | 4d | 2026-11-29 | 2026-12-03 | MOD-RWN-MH-014, A1240, A102580 |  |  |  |  | -113.21d | 0d | Contract Price Original Scope [7873]; Boom Truck Operator [16 h]; Laborer [32 h] | 7,873 |  | RW |
| MOD-RWN-MH-016 |  | Backfill in layers Concrete Manhole 1x1 for Rainwater Drainage Network Zone 1 | 3d | 2026-12-03 | 2026-12-07 | MOD-RWN-MH-015, MOD-GEI-PL-001 |  |  |  |  | -113.21d | 0d | Contract Price Original Scope [5904.75]; Excavator Operator [12 h]; Compactor Operator [12 h]; Laborer [24 h] | 5,904.75 |  | RW |
|  | 2 | **Chambers and Catch Basins** |  | 2025-12-28 | 2026-11-14 |  |  |  |  |  |  |  |  |  |  |  |
|  | 1 | **Gully Outfalls** |  | 2025-12-31 | 2026-02-28 |  |  |  |  |  |  |  |  |  |  |  |
| MOD-RWN-CC-002 |  | Identify discharge zones Gully Outfall for Rainwater Drainage Network Zone 1 | 4d | 2025-12-31 A | 2026-02-28 A | MOD-RWN-PC-006 SS | 100% |  | 2026-02-16 | 2026-02-25 |  |  | Contract Price Original Scope [8953.28]; Laborer [16 h] | 8,953.28 | 8,953.28 | RW |
| MOD-RWN-CC-003 |  | Excavate outfall channel Gully Outfall for Rainwater Drainage Network Zone 1 | 9d | 2026-01-01 A | 2026-01-27 A | MOD-RWN-CC-002 | 100% |  | 2026-02-25 | 2026-03-15 |  |  | Contract Price Original Scope [50138.3]; Excavator Operator [36 h]; Laborer [72 h] | 50,138.35 | 50,138.35 | RW |
| MOD-RWN-CC-004 |  | Place concrete apron or pipes Gully Outfall for Rainwater Drainage Network Zone 1 | 15d | 2026-01-05 A | 2026-02-01 A | MOD-RWN-CC-003 | 100% |  | 2026-03-15 | 2026-04-08 |  |  | Contract Price Original Scope [236367]; Carpenter [92 h]; Laborer [184.01 h] | 236,366.52 | 236,366.52 | RW |
| MOD-RWN-CC-005 |  | Provide slope protection (riprap) Gully Outfall for Rainwater Drainage Network Zone 1 | 8d | 2026-01-28 A | 2026-02-09 A | MOD-RWN-CC-004 | 100% |  | 2026-04-08 | 2026-04-18 |  |  | Contract Price Original Scope [26859.8]; Laborer [96 h]; Dump Truck Operator [48 h] | 26,859.83 | 26,859.83 | RW |
| MOD-RWN-CC-006 |  | Compact and shape terrain Gully Outfall for Rainwater Drainage Network Zone 1 | 6d | 2026-01-29 A | 2026-02-25 A | MOD-RWN-CC-005 | 100% |  | 2026-04-18 | 2026-04-25 |  |  | Contract Price Original Scope [35813.1]; Boom Truck Operator [24 h]; Laborer [24 h] | 35,813.11 | 35,813.11 | RW |
|  | 2 | **Rainwater Catch Basins** |  | 2025-12-28 | 2026-11-14 |  |  |  |  |  |  |  |  |  |  |  |
| MOD-RWN-CC-008 |  | Excavate pit area Catch Basin for Rainwater Drainage Network Zone 1 | 6d | 2025-12-28 A | 2026-03-01 A | MOD-RWN-PC-006 | 100% |  | 2026-03-07 | 2026-03-17 |  |  | Contract Price Original Scope [13040.1]; Excavator Operator [24 h]; Laborer [48 h] | 13,040.13 | 13,040.13 | RW |
| MOD-RWN-CC-009 |  | Lay bedding and place chamber Catch Basin for Rainwater Drainage Network Zone 1 | 12d | 2026-01-05 A | 2026-03-14 A | MOD-RWN-CC-008 | 100% |  | 2026-03-26 | 2026-04-09 |  |  | Contract Price Original Scope [73024.7]; Boom Truck Operator [48 h]; Laborer [96 h] | 73,024.71 | 73,024.71 | RW |
| MOD-RWN-CC-010 |  | Connect lateral inlet pipe Catch Basin for Rainwater Drainage Network Zone 1 | 4d | 2026-01-06 A | 2026-03-30 A | MOD-RWN-CC-009 | 100% |  | 2026-04-09 | 2026-04-14 |  |  | Contract Price Original Scope [344259]; Carpenter [16 h]; Laborer [16 h] | 344,259.36 | 344,259.36 | RW |
| MOD-RWN-CC-011 |  | Cover with grating Catch Basin for Rainwater Drainage Network Zone 1 | 5d | 2026-01-26 A | 2026-06-22 A | MOD-RWN-CC-010 | 100% |  | 2026-04-26 | 2026-05-02 |  |  | Contract Price Original Scope [39120.4]; Boom Truck Operator [20 h]; Laborer [20 h] | 39,120.38 | 39,120.38 | RW |
| MOD-RWN-CC-012 |  | Backfill and surface finish Catch Basin for Rainwater Drainage Network Zone 1 | 2d | 2026-05-02 A | 2026-11-14 | MOD-RWN-CC-011, MOD-GEI-PL-001 | 97% | 0.06d | 2026-06-16 | 2026-06-18 | -93.37d | 19.84d | Contract Price Original Scope [52160.5]; Excavator Operator [8 h]; Compactor Operator [8 h]; Laborer [16 h] | 52,160.51 | 50,595.69 | RW |
|  | 3 | **Precast Chambers for Absorption Pits** |  | 2026-01-01 | 2026-03-24 |  |  |  |  |  |  |  |  |  |  |  |
| MOD-RWN-CC-014 |  | Excavate pit area Absorption Pit for Rainwater Drainage Network Zone 1 | 7d | 2026-01-01 A | 2026-03-02 A | MOD-RWN-PC-006 | 100% |  | 2026-03-18 | 2026-03-31 |  |  | Contract Price Original Scope [33620]; Excavator Operator [16.3 h]; Laborer [32.6 h] | 33,619.97 | 33,619.97 | RW |
| MOD-RWN-CC-015 |  | Install base slab and precast chamber Absorption Pit for Rainwater Drainage Network Zone 1 | 10d | 2026-01-07 A | 2026-03-09 A | MOD-RWN-CC-014 | 100% |  | 2026-03-31 | 2026-04-12 |  |  | Contract Price Original Scope [151290]; Boom Truck Operator [84.01 h]; Laborer [168.02 h] | 151,289.86 | 151,289.86 | RW |
| MOD-RWN-CC-016 |  | Connect outlet/inlet piping Absorption Pit for Rainwater Drainage Network Zone 1 | 5d | 2026-01-16 A | 2026-03-14 A | MOD-RWN-CC-015 | 100% |  | 2026-04-20 | 2026-04-26 |  |  | Contract Price Original Scope [67239.9]; Carpenter [20 h]; Laborer [20 h] | 67,239.94 | 67,239.94 | RW |
| MOD-RWN-CC-017 |  | Waterproofing and protection Absorption Pit for Rainwater Drainage Network Zone 1 | 6d | 2026-01-18 A | 2026-03-19 A | MOD-RWN-CC-016 | 100% |  | 2026-04-26 | 2026-05-03 |  |  | Contract Price Original Scope [50429.9]; Carpenter [24 h]; Laborer [24 h] | 50,429.95 | 50,429.95 | RW |
| MOD-RWN-CC-018 |  | Backfill and compact Absorption Pit for Rainwater Drainage Network Zone 1 | 4d | 2026-02-01 A | 2026-03-24 A | MOD-RWN-CC-017, MOD-GEI-PL-001 | 100% |  | 2026-06-30 | 2026-07-04 |  |  | Contract Price Original Scope [33620]; Excavator Operator [20 h]; Compactor Operator [20 h]; Laborer [40 h] | 33,619.97 | 33,619.97 | RW |

| ID | WBS | Activity | Duration | Start | Finish | Predecessors | Complete | Remaining | Planned start | Planned finish | Total float | Free float | Resources | Cost | Actual cost | MOD-2937 |
| --- | --- | --- | --- | --- | --- | --- | --- | --- | --- | --- | --- | --- | --- | --- | --- | --- |
|  | 3 | **Gully Outfalls to Swales** |  | 2025-12-31 | 2026-11-17 |  |  |  |  |  |  |  |  |  |  |  |
|  | 1 | **Gully Outfalls to Swales** |  | 2025-12-31 | 2026-11-15 |  |  |  |  |  |  |  |  |  |  |  |
| MOD-RWN-GO-002 |  | Identify swale discharge zones Gully Outfall to Swales for Rainwater Drainage Network Zone 1 | 2d | 2025-12-31 A | 2026-01-24 A | MOD-RWN-CC-009 SS | 100% |  | 2026-03-18 | 2026-03-25 |  |  | Contract Price Original Scope [28303.7]; Laborer [20 h]; Surveyor [20 h] | 28,303.72 | 28,303.72 | RW |
| MOD-RWN-GO-003 |  | Excavate outfall channel Gully Outfall to Swales for Rainwater Drainage Network Zone 1 | 4d | 2026-01-03 A | 2026-06-18 A | MOD-RWN-GO-002 | 100% |  | 2026-03-25 | 2026-03-30 |  |  | Contract Price Original Scope [56607.4]; Excavator Operator [45.05 h]; Laborer [90.1 h] | 56,607.45 | 56,607.45 | RW |
| MOD-RWN-GO-004 |  | Place concrete apron or pipes Gully Outfall to Swales for Rainwater Drainage Network Zone 1 | 5d | 2026-01-07 A | 2026-11-14 | MOD-RWN-GO-003 | 95% | 0.25d | 2026-03-30 | 2026-04-05 | -94.64d | 0d | Contract Price Original Scope [127367]; Carpenter [115.13 h]; Laborer [230.26 h] | 127,366.76 | 120,998.42 | RW |
| MOD-RWN-GO-005 |  | Provide slope protection (riprap) Gully Outfall to Swales for Rainwater Drainage Network Zone 1 | 4d | 2026-02-01 A | 2026-11-14 | MOD-RWN-GO-004 | 90% | 0.4d | 2026-05-14 | 2026-05-19 | -94.64d | 0d | Contract Price Original Scope [42455.6]; Laborer [120.13 h]; Dump Truck Operator [60.06 h] | 42,455.59 | 38,210.03 | RW |
| MOD-RWN-GO-006 |  | Compact and shape terrain Gully Outfall to Swales for Rainwater Drainage Network Zone 1 | 2d | 2026-04-02 A | 2026-11-15 | MOD-RWN-GO-005 | 66% | 0.68d | 2026-06-17 | 2026-06-20 | -94.64d | 18.57d | Contract Price Original Scope [28303.7]; Boom Truck Operator [30.03 h]; Laborer [30.03 h] | 28,303.72 | 18,680.46 | RW |
|  | 2 | **Riprap Works & Protection** |  | 2026-02-01 | 2026-11-17 |  |  |  |  |  |  |  |  |  |  |  |
| MOD-RWN-GO-008 |  | Lay filter fabric/membrane for Rainwater Drainage Network Zone 1 | 2d | 2026-02-01 A | 2026-11-14 | MOD-RWN-CC-010 SS | 80% | 0.4d | 2026-05-17 | 2026-05-19 | -97.03d | 0d | Contract Price Original Scope [7075.93]; Laborer [60.06 h] | 7,075.93 | 5,660.74 | RW |
| MOD-RWN-GO-009 |  | Place riprap/stone layer for Rainwater Drainage Network Zone 1 | 7d | 2026-02-28 A | 2026-11-16 | MOD-RWN-GO-008 | 74% | 1.82d | 2026-05-21 | 2026-06-03 | -97.03d | 0d | Contract Price Original Scope [38917.6]; Laborer [322.58 h]; Dump Truck Operator [161.29 h] | 38,917.62 | 28,799.04 | RW |
| MOD-RWN-GO-010 |  | Compact edges for Rainwater Drainage Network Zone 1 | 3d | 2026-04-01 A | 2026-11-17 | MOD-RWN-GO-009 | 50% | 1.5d | 2026-06-18 | 2026-06-22 | -97.03d | 0d | Contract Price Original Scope [14151.9]; Compactor Operator [59.88 h]; Laborer [59.88 h] | 14,151.86 | 7,075.93 | RW |
| MOD-RWN-GO-011 |  | Ensure hydraulic flow direction for Rainwater Drainage Network Zone 1 | 2d | 2026-05-01 A | 2026-05-06 A | MOD-RWN-GO-010 | 100% |  | 2026-06-22 | 2026-06-24 |  |  | Contract Price Original Scope [10613.9]; Laborer [50 h]; Surveyor [50 h] | 10,613.9 | 10,613.9 | RW |
|  | 6 | **Backfilling & Bedding** |  | 2026-01-01 | 2026-11-23 |  |  |  |  |  |  |  |  |  |  |  |
|  | 1 | **Backfilling Materials (Type A – 201–700mm Pipes)** |  | 2026-01-01 | 2026-11-17 |  |  |  |  |  |  |  |  |  |  |  |
| MOD-RWN-BB-002 |  | Place granular bedding under pipe for Rainwater Drainage Network Zone 1 | 9d | 2026-01-01 A | 2026-11-07 | MOD-RWN-PC-003 | 99% | 0.09d | 2026-02-01 | 2026-02-11 | -107.71d | 0d | Contract Price Original Scope [306676]; Excavator Operator [21.82 h]; Laborer [43.64 h] | 306,675.71 | 303,608.95 | RW |
| MOD-RWN-BB-003 |  | Lay and align pipe for Rainwater Drainage Network Zone 1 | 21d | 2026-02-01 A | 2026-11-08 | MOD-RWN-BB-002 | 99% | 0.21d | 2026-03-18 | 2026-04-18 | -96.45d | 0d | Contract Price Original Scope [1380041]; Pipefitter [203.64 h]; Laborer [101.82 h] | 1,380,040.69 | 1,366,240.28 | RW |
| MOD-RWN-BB-004 |  | Backfill up to spring line for Rainwater Drainage Network Zone 1 | 13d | 2026-02-10 A | 2026-11-08 | MOD-RWN-BB-003, MOD-GEI-PL-001 | 98% | 0.26d | 2026-05-23 | 2026-06-11 | -96.45d | 0d | Contract Price Original Scope [613351]; Compactor Operator [129.87 h]; Laborer [259.74 h] | 613,351.42 | 601,084.39 | RW |
| MOD-RWN-BB-005 |  | Compact layer-wise for Rainwater Drainage Network Zone 1 | 9d | 2026-02-17 A | 2026-11-08 | MOD-RWN-BB-004 | 98% | 0.18d | 2026-06-11 | 2026-06-22 | -96.45d | 0d | Contract Price Original Scope [460014]; Compactor Operator [90.09 h]; Laborer [90.09 h] | 460,013.56 | 450,813.29 | RW |
| MOD-RWN-BB-006 |  | Final fill to subgrade level for Rainwater Drainage Network Zone 1 | 6d | 2026-11-10 | 2026-11-17 | MOD-RWN-BB-005 FS+1.9d |  |  |  |  | -96.45d | 16.76d | Contract Price Original Scope [306676]; Excavator Operator [59.88 h]; Laborer [59.88 h] | 306,675.71 |  | RW |
|  | 2 | **Gravel Bedding & Filter Cloth for uPVC Drain Pipes** |  | 2026-02-03 | 2026-11-23 |  |  |  |  |  |  |  |  |  |  |  |
| MOD-RWN-BB-008 |  | Line trench with filter cloth for Rainwater Drainage Network Zone 1 | 10d | 2026-02-03 A | 2026-11-07 | MOD-RWN-PC-003 SS | 98% | 0.2d | 2026-02-24 | 2026-03-16 | -102d | 0d | Contract Price Original Scope [152963]; Laborer [225.45 h] | 152,963.36 | 149,904.09 | RW |
| MOD-RWN-BB-009 |  | Place and compact gravel bedding for Rainwater Drainage Network Zone 1 | 12d | 2026-02-09 A | 2026-11-07 | MOD-RWN-BB-008 | 98% | 0.24d | 2026-03-16 | 2026-04-05 | -102d | 0d | Contract Price Original Scope [305927]; Excavator Operator [47.27 h]; Laborer [94.55 h] | 305,926.71 | 299,808.18 | RW |
| MOD-RWN-BB-010 |  | Lay pipe within gravel zone for Rainwater Drainage Network Zone 1 | 20d | 2026-02-17 A | 2026-11-07 | MOD-RWN-BB-009 | 98% | 0.4d | 2026-05-11 | 2026-06-08 | -102d | 0d | Contract Price Original Scope [688335]; Pipefitter [281.69 h]; Laborer [140.85 h] | 688,335.11 | 674,568.4 | RW |
| MOD-RWN-BB-011 |  | Wrap filter cloth above pipe for Rainwater Drainage Network Zone 1 | 12d | 2026-02-21 A | 2026-11-09 | MOD-RWN-BB-010 | 90% | 1.2d | 2026-06-08 | 2026-06-22 | -102d | 0d | Contract Price Original Scope [229445]; Laborer [666.67 h] | 229,445.04 | 206,500.53 | RW |
| MOD-RWN-BB-012 |  | Final fill and trench restoration for Rainwater Drainage Network Zone 1 | 12d | 2026-11-09 | 2026-11-23 | MOD-RWN-BB-011 FS+0.9d |  |  |  |  | -102d | 11.21d | Contract Price Original Scope [152963]; Excavator Operator [263.16 h]; Compactor Operator [263.16 h] | 152,963.36 |  | RW |

| ID | WBS | Activity | Duration | Start | Finish | Predecessors | Complete | Remaining | Planned start | Planned finish | Total float | Free float | Calendar | Resources | Cost | Actual cost | MOD-2937 |
| --- | --- | --- | --- | --- | --- | --- | --- | --- | --- | --- | --- | --- | --- | --- | --- | --- | --- |
|  | 13 | **Potable Water Network Zone 1** |  | 2025-09-09 | 2026-12-24 |  |  |  |  |  |  |  |  |  |  |  |  |
|  | 1 | **Pipe Installation Works** |  | 2025-09-09 | 2026-11-08 |  |  |  |  |  |  |  |  |  |  |  |  |
| MOD-PWN-PI-373 |  | Trench Excavation for Potable Water Network Zone 1 | 21d | 2025-09-09 A | 2026-01-16 A | A102500, A102190 | 100% |  | 2025-11-28 | 2025-12-18 |  |  | 7-Day Workweek-9 | Contract Price Original Scope [400946]; Excavator Operator [344.83 h]; Laborer [689.66 h] | 400,946.45 | 400,946.45 | PW |
| MOD-PWN-PI-383 |  | Lean Concrete / Pipe Bedding Preparation for Potable Water Network Zone 1 | 4d | 2025-09-10 A | 2026-11-07 | MOD-PWN-PI-373 | 97% | 0.12d | 2025-12-26 | 2025-12-29 | 52.98d | 0d | 7-Day Workweek-9 | Contract Price Original Scope [100237]; Laborer [160 h] | 100,236.61 | 97,229.51 | PW |
| MOD-PWN-PI-393 |  | HDPE Pipe Laying (200 mm to 710 mm) for Potable Water Network Zone 1 | 21d | 2025-09-13 A | 2026-11-07 | MOD-PWN-PI-383, A1650 | 97% | 0.63d | 2025-12-30 | 2026-01-19 | 52.98d | 0d | 7-Day Workweek-9 | Contract Price Original Scope [902130]; Pipefitter [2320.47 h]; Laborer [4640.95 h]; Welder [2320.47 h] | 902,129.52 | 875,065.63 | PW |
| MOD-PWN-PI-413 |  | Coating / Wrapping for Potable Water Network Zone 1 | 5d | 2025-11-04 A | 2026-11-08 | MOD-PWN-PI-403 | 97% | 0.15d | 2026-01-11 | 2026-01-16 | 52.98d | 0d | 7-Day Workweek-9 | Contract Price Original Scope [200473]; Laborer [100 h] | 200,473.23 | 194,459.03 | PW |
| MOD-PWN-PI-403 |  | Test (Pressure-slope) for Potable Water Network Zone 1 | 3d | 2025-11-10 A | 2026-11-07 | MOD-PWN-PI-393 | 96% | 0.12d | 2025-12-04 | 2025-12-06 | 52.98d | 0d | 7-Day Workweek-9 | Contract Price Original Scope [200473]; Pipefitter [10 h]; Technician [10 h] | 200,473.23 | 192,454.3 | PW |
| MOD-PWN-PI-423 |  | Backfilling & Warrning Tape for Potable Water Network Zone 1 | 3d | 2025-11-18 A | 2026-11-08 | MOD-PWN-PI-413, MOD-PWN-PI-413 FF, MOD-GEI-PL-001 | 90% | 0.3d | 2026-01-27 | 2026-01-30 | 52.98d | 46.43d | 7-Day Workweek-9 | Contract Price Original Scope [200473]; Compactor Operator [0.02 h]; Laborer [0.04 h] | 200,473.23 | 180,425.9 | PW |
|  | 2 | **Valve Installation & Chambers** |  | 2026-02-01 | 2026-11-09 |  |  |  |  |  |  |  |  |  |  |  |  |
| MOD-PWN-VC-004 |  | Valve Chamber Excavation for Potable Water Network Zone 1 | 8d | 2026-02-01 A | 2026-11-07 | MOD-PWN-PI-373 | 99% | 0.08d | 2026-02-21 | 2026-03-09 | 25.7d | 0d |  | Contract Price Original Scope [158152]; Excavator Operator [5 h]; Laborer [10 h] | 158,151.71 | 156,570.19 | PW |
| MOD-PWN-VC-005 |  | RC Slab, Walls, or Precast Chambers for Potable Water Network Zone 1 | 7d | 2026-02-05 A | 2026-11-07 | MOD-PWN-VC-004, A102760 | 96% | 0.28d | 2026-05-16 | 2026-05-24 | 44.72d | 0.12d |  | Contract Price Original Scope [126521]; Mason [540.54 h]; Laborer [810.81 h] | 126,521.37 | 121,460.51 | PW |
| MOD-PWN-VC-001 |  | Gate Valves (225–710 mm) for Potable Water Network Zone 1 | 12d | 2026-02-14 A | 2026-11-07 | A102750 | 96% | 0.48d | 2026-04-27 | 2026-05-11 | 44.6d | 0d |  | Contract Price Original Scope [94891]; Crane Operator [80 h]; Pipefitter [160 h] | 94,891.03 | 91,095.39 | PW |
| MOD-PWN-VC-003 |  | 3-exit (2 x 2.5-inch and 1 x 4-inch) dry vacuum cylinder detachable fire nozzle for Potable Water Network Zone 1 | 12d | 2026-02-14 A | 2026-11-07 | MOD-PWN-VC-002 SS | 96% | 0.48d | 2026-04-27 | 2026-05-11 | 44.6d | 0d |  | Contract Price Original Scope [82238.9]; Pipefitter [135.99 h]; Welder [68 h] | 82,238.89 | 78,949.33 | PW |
| MOD-PWN-VC-002 |  | Butterfly Valves (355, 500, 630 mm) for Potable Water Network Zone 1 | 12d | 2026-02-15 A | 2026-11-07 | MOD-PWN-VC-001 SS, A102750 | 96% | 0.48d | 2026-04-27 | 2026-05-11 | 44.6d | 0d |  | Contract Price Original Scope [75912.8]; Crane Operator [64 h]; Pipefitter [127.99 h] | 75,912.82 | 72,876.31 | PW |
| MOD-PWN-VC-006 |  | Fixing Covers, Gratings, Frames for Potable Water Network Zone 1 | 4d | 2026-03-24 A | 2026-11-07 | MOD-PWN-VC-005, MOD-PWN-VC-003 | 92% | 0.32d | 2026-06-02 | 2026-06-07 | 44.6d | 0d |  | Contract Price Original Scope [63260.7]; Laborer [259.74 h]; Welder [129.87 h] | 63,260.68 | 58,199.83 | PW |
| MOD-PWN-VC-007 |  | Tagging & Painting for Potable Water Network Zone 1 | 2d | 2026-11-07 | 2026-11-09 | MOD-PWN-VC-006 |  |  |  |  | 44.6d | 38.95d |  | Contract Price Original Scope [31630.3]; Painter [59.88 h]; Laborer [59.88 h] | 31,630.34 |  | PW |
|  | 3 | **Flow Meter Installation** |  | 2026-05-01 | 2026-12-24 |  |  |  |  |  |  |  |  |  |  |  |  |
| MOD-PWN-FM-001 |  | Chamber Excavation (280 mm, 300 mm, 500 mm, 800 mm) for Potable Water Network Zone 1 | 14d | 2026-05-01 A | 2026-05-06 A | MOD-PWN-VC-004 SS | 100% |  | 2026-06-01 | 2026-06-16 |  |  |  | Contract Price Original Scope [36921.7]; Excavator Operator [5 h]; Laborer [5 h] | 36,921.69 | 36,921.69 | PW |
| MOD-PWN-FM-002 |  | RC or Precast Chamber Construction for Potable Water Network Zone 1 | 8d | 2026-05-07 A | 2026-11-10 | MOD-PWN-FM-001, A102760 | 60% | 3.2d | 2026-06-17 | 2026-06-25 | 25.7d | 20.05d |  | Contract Price Original Scope [18460.8]; Mason [10 h]; Laborer [10 h] | 18,460.85 | 11,076.51 | PW |
| MOD-PWN-FM-003 |  | Flowmeter Installation & Pipe Integration for Potable Water Network Zone 1 | 15d | 2026-07-01 A | 2026-12-12 | MOD-PWN-FM-002, A1570, A102620 | 50% | 7.5d | 2026-11-05 | 2026-11-23 | 5.65d | 0d |  | Contract Price Original Scope [43075.3]; Pipefitter [144.1 h]; Technician [72.05 h] | 43,075.31 | 21,537.66 | PW |
| MOD-PWN-FM-004 |  | Wiring/Cabling if applicable for Potable Water Network Zone 1 | 8d | 2026-12-12 | 2026-12-21 | MOD-PWN-FM-003 |  |  |  |  | 5.65d | 0d |  | Contract Price Original Scope [18460.8] | 18,460.85 |  | PW |
| MOD-PWN-FM-005 |  | Calibration & Commissioning for Potable Water Network Zone 1 | 3d | 2026-12-21 | 2026-12-24 | MOD-PWN-FM-004 |  |  |  |  | 5.65d | 0d |  | Contract Price Original Scope [6153.62]; Technician [10 h]; Electrician [10 h] | 6,153.62 |  | PW |
|  | 4 | **Washout & Air Valve Chambers** |  | 2026-05-01 | 2026-11-12 |  |  |  |  |  |  |  |  |  |  |  |  |
| MOD-PWN-WA-001 |  | Chamber Excavation (280 mm to 710 mm) for Potable Water Network Zone 1 | 8d | 2026-05-01 A | 2026-05-07 A | MOD-PWN-VC-004 SS | 100% |  | 2026-06-01 | 2026-06-09 |  |  |  | Contract Price Original Scope [77872.4]; Excavator Operator [5 h]; Laborer [5 h] | 77,872.36 | 77,872.36 | PW |
| MOD-PWN-WA-002 |  | RC Blinding + Base + Walls for Potable Water Network Zone 1 | 9d | 2026-05-09 A | 2026-08-16 A | MOD-PWN-WA-001 | 100% |  | 2026-06-10 | 2026-06-20 |  |  |  | Contract Price Original Scope [58404.3]; Mason [180.18 h]; Laborer [270.27 h] | 58,404.27 | 58,404.27 | PW |
| MOD-PWN-WA-003 |  | Pipe Work for Potable Water Network Zone 1 | 12d | 2026-08-09 A | 2026-11-07 | MOD-PWN-WA-002, A102740, A1650 | 93% | 0.84d | 2026-08-23 | 2026-09-06 | 42.04d | 0d |  | Contract Price Original Scope [175213]; Pipefitter [216 h]; Laborer [108 h] | 175,212.8 | 162,947.9 | PW |
| MOD-PWN-WA-004 |  | Washout (Valve + Outlet) Installation for Potable Water Network Zone 1 | 8d | 2026-08-16 A | 2026-11-08 | MOD-PWN-WA-003, A102750 | 92% | 0.64d | 2026-09-06 | 2026-09-15 | 42.04d | 0d |  | Contract Price Original Scope [129539]; Pipefitter [31.47 h]; Welder [15.74 h] | 129,538.51 | 119,175.43 | PW |
| MOD-PWN-WA-005 |  | Air Valve Rooms (Valve + Outlet) Installation for Potable Water Network Zone 1 | 7d | 2026-08-16 A | 2026-11-09 | MOD-PWN-WA-004, A102750, A102780 | 92% | 0.56d | 2026-09-15 | 2026-09-24 | 42.04d | 0d |  | Contract Price Original Scope [90150.2]; Pipefitter [22.32 h]; Plumber [11.16 h] | 90,150.2 | 82,938.18 | PW |
| MOD-PWN-WA-006 |  | Covers, Ladders & Tags for Potable Water Network Zone 1 | 4d | 2026-09-14 A | 2026-11-09 | MOD-PWN-WA-005 | 92% | 0.32d | 2026-09-14 | 2026-09-19 | 42.04d | 0d |  | Contract Price Original Scope [38936.2]; Laborer [59.88 h]; Welder [59.88 h] | 38,936.18 | 35,821.28 | PW |
| MOD-PWN-WA-007 |  | Backfilling & Final Finishing for Potable Water Network Zone 1 | 3d | 2026-11-09 | 2026-11-12 | MOD-PWN-WA-006, MOD-GEI-PL-001 |  |  |  |  | 42.04d | 36.39d |  | Contract Price Original Scope [38936.2] | 38,936.18 |  | PW |

| ID | WBS | Activity | Duration | Start | Finish | Predecessors | Complete | Remaining | Planned start | Planned finish | Total float | Free float | Calendar | Resources | Cost | Actual cost | MOD-2937 |
| --- | --- | --- | --- | --- | --- | --- | --- | --- | --- | --- | --- | --- | --- | --- | --- | --- | --- |
|  | 7 | **Irrigation Network Zone 1** |  | 2025-11-04 | 2026-12-09 |  |  |  |  |  |  |  |  |  |  |  |  |
|  | 1 | **Excavation, Pipe Laying & Backfilling** |  | 2025-11-04 | 2026-11-07 |  |  |  |  |  |  |  |  |  |  |  |  |
| MOD-IRN-EB-390 |  | Trench Excavation for Irrigation Network Zone 1 | 21d | 2025-11-04 A | 2026-08-29 A | A102500, A102190 | 100% |  | 2025-12-15 | 2026-01-04 |  |  | 7-Day Workweek-9 | Contract Price Original Scope [218514] | 218,513.8 | 218,513.8 | IR |
| MOD-IRN-EB-400 |  | Lean Concrete / Pipe Bedding with Type B Material for Irrigation Network Zone 1 | 9d | 2025-11-04 A | 2026-11-07 | MOD-IRN-EB-390 | 99% | 0.09d | 2026-01-07 | 2026-01-16 | 53.86d | 0d | 7-Day Workweek-9 | Contract Price Original Scope [54628.4]; Laborer [160 h] | 54,628.45 | 54,082.17 | IR |
| MOD-IRN-EB-410 |  | HDPE Pipe Laying (125 mm to 630 mm) for Irrigation Network Zone 1 | 21d | 2025-11-10 A | 2026-11-07 | MOD-IRN-EB-400, A1650 | 99% | 0.21d | 2026-01-08 | 2026-01-29 | 53.86d | 0d | 7-Day Workweek-9 | Contract Price Original Scope [491656]; Pipefitter [2196.86 h]; Laborer [4393.72 h] | 491,656.05 | 486,739.49 | IR |
| MOD-IRN-EB-420 |  | Test (Pressure-slope) for Irrigation Network Zone 1 | 2d | 2026-01-01 A | 2026-11-07 | MOD-IRN-EB-410 | 99% | 0.02d | 2026-02-04 | 2026-02-06 | 53.86d | 0d | 7-Day Workweek-9 | Contract Price Original Scope [109257]; Pipefitter [10 h] | 109,256.9 | 108,164.33 | IR |
| MOD-IRN-EB-430 |  | Coating / Wrapping for Irrigation Network Zone 1 | 2d | 2026-02-28 A | 2026-11-07 | MOD-IRN-EB-420 | 99% | 0.02d | 2026-04-14 | 2026-04-16 | 53.86d | 0d | 7-Day Workweek-9 | Contract Price Original Scope [109257] | 109,256.9 | 108,164.33 | IR |
| MOD-IRN-EB-440 |  | Backfilling & Warrning Tape for Irrigation Network Zone 1 | 2d | 2026-03-03 A | 2026-11-07 | MOD-IRN-EB-430, MOD-IRN-EB-430 FF, MOD-GEI-PL-001 | 95% | 0.1d | 2026-04-16 | 2026-04-18 | 53.86d | 32.21d | 7-Day Workweek-9 | Contract Price Original Scope [109257]; Compactor Operator [40 h]; Laborer [80 h] | 109,256.9 | 103,794.05 | IR |
|  | 2 | **Valves and Appurtenances** |  | 2026-02-01 | 2026-11-09 |  |  |  |  |  |  |  |  |  |  |  |  |
| MOD-IRN-VA-001 |  | Supply & Installation of Valves (Gate Valve) for Irrigation Network Zone 1 | 8d | 2026-02-01 A | 2026-11-07 | A102750 | 97% | 0.24d | 2026-04-09 | 2026-04-19 | 41.55d | 0d |  | Contract Price Original Scope [78843.6]; Crane Operator [201 h]; Pipefitter [402 h] | 78,843.59 | 76,478.28 | IR |
| MOD-IRN-VA-002 |  | Supply & Installation of Valves (Butterfly Valve) for Irrigation Network Zone 1 | 9d | 2026-02-05 A | 2026-11-07 | MOD-IRN-VA-001 SS+4d, A102750 | 95% | 0.45d | 2026-04-14 | 2026-04-25 | 41.55d | 0d |  | Contract Price Original Scope [35634.3]; Crane Operator [10.2 h]; Pipefitter [20.4 h] | 35,634.32 | 33,852.61 | IR |
| MOD-IRN-VA-003 |  | Installation of Flanges, Bolts, Collars, Nuts for Irrigation Network Zone 1 | 3d | 2026-03-26 A | 2026-11-07 | MOD-IRN-VA-002 | 93% | 0.21d | 2026-05-26 | 2026-06-03 | 41.55d | 0d |  | Contract Price Original Scope [5087.91]; Pipefitter [60.06 h] | 5,087.91 | 4,731.75 | IR |
| MOD-IRN-VA-005 |  | Support Brackets/Anchor Blocks for Irrigation Network Zone 1 | 2d | 2026-04-01 A | 2026-11-09 | MOD-IRN-VA-004 | 70% | 0.6d | 2026-06-07 | 2026-06-09 | 45.34d | 26.59d |  | Contract Price Original Scope [4451.92]; Laborer [40 h]; Welder [20 h] | 4,451.92 | 3,116.34 | IR |
| MOD-IRN-VA-004 |  | Valve Pressure Testing for Irrigation Network Zone 1 | 2d | 2026-07-05 A | 2026-11-08 | MOD-IRN-VA-003 | 60% | 0.8d | 2026-07-13 | 2026-07-15 | 45.34d | 0d |  | Contract Price Original Scope [3179.94]; Pipefitter [10 h]; Technician [10 h] | 3,179.94 | 1,907.97 | IR |
|  | 3 | **Valve Rooms** |  | 2026-02-01 | 2026-11-09 |  |  |  |  |  |  |  |  |  |  |  |  |
| MOD-IRN-VR-001 |  | Excavation for Valve Room Valve Chamber for Irrigation Network Zone 1 | 3d | 2026-02-01 A | 2026-07-13 A | MOD-IRN-VA-003, A1600 | 100% |  | 2026-04-29 | 2026-05-03 |  |  |  | Contract Price Original Scope [18044.4] | 18,044.41 | 18,044.41 | IR |
| MOD-IRN-VR-002 |  | Blinding Concrete Valve Chamber for Irrigation Network Zone 1 | 2d | 2026-03-01 A | 2026-11-07 | MOD-IRN-VR-001, A103770 | 97% | 0.06d | 2026-06-23 | 2026-06-25 | 44.56d | 0d |  | Contract Price Original Scope [12029.6]; Laborer [60.06 h] | 12,029.61 | 11,668.72 | IR |
| MOD-IRN-VR-003 |  | RCC Base Slab & Chamber Walls Valve Chamber for Irrigation Network Zone 1 | 4d | 2026-03-04 A | 2026-11-08 | MOD-IRN-VR-002, A102760 | 90% | 0.4d | 2026-06-25 | 2026-06-30 | 44.56d | 0d |  | Contract Price Original Scope [14435.5]; Mason [100 h]; Laborer [150 h] | 14,435.53 | 12,991.98 | IR |
| MOD-IRN-VR-004 |  | Block Wall Construction (if any) Valve Chamber for Irrigation Network Zone 1 | 4d | 2026-03-07 A | 2026-11-08 | MOD-IRN-VR-003 | 88% | 0.48d | 2026-06-30 | 2026-07-05 | 44.56d | 0d |  | Contract Price Original Scope [21653.3]; Mason [139.86 h]; Laborer [139.86 h] | 21,653.29 | 19,054.9 | IR |
| MOD-IRN-VR-005 |  | Installation of Valve inside the Room Valve Chamber for Irrigation Network Zone 1 | 5d | 2026-04-05 A | 2026-11-09 | MOD-IRN-VR-004 | 88% | 0.6d | 2026-07-05 | 2026-07-11 | 44.56d | 0d |  | Contract Price Original Scope [30074]; Pipefitter [4 h] | 30,074.02 | 26,465.13 | IR |
| MOD-IRN-VR-006 |  | Fixing Frame & Cover Valve Chamber for Irrigation Network Zone 1 | 2d | 2026-07-11 A | 2026-11-09 | MOD-IRN-VR-005 | 88% | 0.24d | 2026-07-20 | 2026-07-21 | 44.56d | 0d |  | Contract Price Original Scope [18044.4]; Laborer [40 h]; Welder [40 h] | 18,044.41 | 15,879.08 | IR |
| MOD-IRN-VR-007 |  | Backfilling and Finishing Valve Chamber for Irrigation Network Zone 1 | 1d | 2026-07-13 A | 2026-11-09 | MOD-IRN-VR-006, MOD-GEI-PL-001 | 60% | 0.4d | 2026-07-22 | 2026-07-22 | 44.56d | 25.81d |  | Contract Price Original Scope [6014.8] | 6,014.8 | 3,608.88 | IR |
|  | 4 | **Washout Chambers** |  | 2026-05-01 | 2026-11-07 |  |  |  |  |  |  |  |  |  |  |  |  |
| MOD-IRN-WC-001 |  | Excavation for Chamber Washout Chamber for Irrigation Network Zone 1 | 6d | 2026-05-01 A | 2026-05-30 A | MOD-IRN-VA-003 SS, A1600 | 100% |  | 2026-05-13 | 2026-05-20 |  |  |  | Contract Price Original Scope [28122.7]; Excavator Operator [5 h]; Laborer [5 h] | 28,122.71 | 28,122.71 | IR |
| MOD-IRN-WC-002 |  | Blinding Concrete Washout Chamber for Irrigation Network Zone 1 | 3d | 2026-05-05 A | 2026-06-17 A | MOD-IRN-WC-001, A103770 | 100% |  | 2026-05-20 | 2026-05-24 |  |  |  | Contract Price Original Scope [14061.4]; Laborer [60.06 h] | 14,061.36 | 14,061.36 | IR |
| MOD-IRN-WC-003 |  | Construction of RCC Base & Chamber Wall Washout Chamber for Irrigation Network Zone 1 | 4d | 2026-05-09 A | 2026-06-17 A | MOD-IRN-WC-002 | 100% |  | 2026-05-24 | 2026-06-02 |  |  |  | Contract Price Original Scope [21092]; Mason [10 h]; Laborer [15 h] | 21,092.04 | 21,092.04 | IR |
| MOD-IRN-WC-004 |  | Washout Valve & Pipe Connection Washout Chamber for Irrigation Network Zone 1 | 5d | 2026-05-11 A | 2026-07-27 A | MOD-IRN-WC-003, A102750 | 100% |  | 2026-06-01 | 2026-06-07 |  |  |  | Contract Price Original Scope [49214.8]; Pipefitter [88.02 h] | 49,214.75 | 49,214.75 | IR |
| MOD-IRN-WC-005 |  | Manhole Frame, Cover & Ladder Fixing Washout Chamber for Irrigation Network Zone 1 | 5d | 2026-06-23 A | 2026-11-07 | MOD-IRN-WC-004, A1480, A102600 | 97% | 0.15d | 2026-06-29 | 2026-07-05 | 46.77d | 0d |  | Contract Price Original Scope [21092]; Laborer [50 h]; Welder [50 h] | 21,092.04 | 20,459.27 | IR |
| MOD-IRN-WC-006 |  | Backfilling & Reinstatement Washout Chamber for Irrigation Network Zone 1 | 1d | 2026-07-04 A | 2026-11-07 | MOD-IRN-WC-005, MOD-GEI-PL-001 | 97% | 0.03d | 2026-07-16 | 2026-07-18 | 46.77d | 28.02d |  | Contract Price Original Scope [7030.68] | 7,030.68 | 6,819.76 | IR |

| ID | WBS | Activity | Duration | Start | Finish | Predecessors | Complete | Remaining | Planned start | Planned finish | Total float | Free float | Resources | Cost | Actual cost | MOD-2937 |
| --- | --- | --- | --- | --- | --- | --- | --- | --- | --- | --- | --- | --- | --- | --- | --- | --- |
|  | 5 | **Air Valve Chambers** |  | 2026-03-22 | 2026-07-27 |  |  |  |  |  |  |  |  |  |  |  |
| MOD-IRN-AC-001 |  | Chamber Excavation Air Valve Chamber for Irrigation Network Zone 1 | 6d | 2026-03-22 A | 2026-05-31 A | MOD-IRN-VA-003 SS | 100% |  | 2026-06-06 | 2026-06-13 |  |  | Contract Price Original Scope [18979.3]; Excavator Operator [5 h]; Laborer [5 h] | 18,979.34 | 18,979.34 | IR |
| MOD-IRN-AC-002 |  | Blinding & RCC Base Air Valve Chamber for Irrigation Network Zone 1 | 4d | 2026-03-30 A | 2026-06-22 A | MOD-IRN-AC-001, A103770 | 100% |  | 2026-06-13 | 2026-06-17 |  |  | Contract Price Original Scope [9489.67]; Laborer [80 h] | 9,489.67 | 9,489.67 | IR |
| MOD-IRN-AC-003 |  | Wall Casting / Blockwork Air Valve Chamber for Irrigation Network Zone 1 | 4d | 2026-03-31 A | 2026-06-23 A | MOD-IRN-AC-002 | 100% |  | 2026-06-17 | 2026-06-22 |  |  | Contract Price Original Scope [14234.5]; Mason [119.76 h]; Laborer [119.76 h] | 14,234.51 | 14,234.51 | IR |
| MOD-IRN-AC-004 |  | Air Valve Installation (280–630 mm) Air Valve Chamber for Irrigation Network Zone 1 | 4d | 2026-04-01 A | 2026-07-09 A | MOD-IRN-AC-003, A102780 | 100% |  | 2026-06-20 | 2026-06-24 |  |  | Contract Price Original Scope [37958.7]; Pipefitter [27.42 h] | 37,958.68 | 37,958.68 | IR |
| MOD-IRN-AC-005 |  | Cover Fixing & Finishing Air Valve Chamber for Irrigation Network Zone 1 | 2d | 2026-06-23 A | 2026-07-27 A | MOD-IRN-AC-004 | 100% |  | 2026-06-29 | 2026-07-01 |  |  | Contract Price Original Scope [14234.5]; Laborer [59.88 h] | 14,234.51 | 14,234.51 | IR |
|  | 6 | **Flow Meter Chambers** |  | 2026-04-13 | 2026-12-09 |  |  |  |  |  |  |  |  |  |  |  |
| MOD-IRN-FC-001 |  | Chamber Excavation Flow Meter Chamber for Irrigation Network Zone 1 | 8d | 2026-04-13 A | 2026-06-28 A | MOD-IRN-VA-003 SS | 100% |  | 2026-05-13 | 2026-05-23 |  |  | Contract Price Original Scope [17934.9]; Excavator Operator [5 h]; Laborer [5 h] | 17,934.92 | 17,934.92 | IR |
| MOD-IRN-FC-002 |  | RCC Base & Wall Construction Flow Meter Chamber for Irrigation Network Zone 1 | 5d | 2026-05-19 A | 2026-08-03 A | MOD-IRN-FC-001, A102760 | 100% |  | 2026-06-15 | 2026-06-21 |  |  | Contract Price Original Scope [8967.46]; Mason [100 h]; Laborer [150 h] | 8,967.46 | 8,967.46 | IR |
| MOD-IRN-FC-003 |  | Flow Meter Installation (280, 300, 500 mm) Flow Meter Chamber for Irrigation Network Zone 1 | 6d | 2026-07-01 A | 2026-12-06 | MOD-IRN-FC-002, A1570, A102620 | 70% | 1.8d | 2026-08-18 | 2026-08-25 | 18.75d | 0d | Contract Price Original Scope [31386.1]; Pipefitter [104.05 h]; Technician [52.02 h] | 31,386.12 | 21,970.28 | IR |
| MOD-IRN-FC-004 |  | Integration with Pipework Flow Meter Chamber for Irrigation Network Zone 1 | 2d | 2026-07-02 A | 2026-12-06 | MOD-IRN-FC-003 | 70% | 0.6d | 2026-08-23 | 2026-08-25 | 18.75d | 0d | Contract Price Original Scope [13451.2]; Pipefitter [119.76 h] | 13,451.19 | 9,415.84 | IR |
| MOD-IRN-FC-005 |  | Testing & Calibration Flow Meter Chamber for Irrigation Network Zone 1 | 2d | 2026-12-06 | 2026-12-08 | MOD-IRN-FC-004 |  |  |  |  | 18.75d | 0d | Contract Price Original Scope [13451.2]; Technician [10 h] | 13,451.19 |  | IR |
| MOD-IRN-FC-006 |  | Cover and Access Arrangement Flow Meter Chamber for Irrigation Network Zone 1 | 1d | 2026-12-08 | 2026-12-09 | MOD-IRN-FC-005 |  |  |  |  | 18.75d | 0d | Contract Price Original Scope [4483.73]; Laborer [20 h] | 4,483.73 |  | IR |
|  | 4 | **Rainwater Collection Ponds Zone 1** |  | 2025-07-22 | 2027-04-06 |  |  |  |  |  |  |  |  |  |  |  |
|  | 10 | **Excavation for Rainwater Drainage Pond** |  | 2025-07-22 | 2027-01-09 |  |  |  |  |  |  |  |  |  |  |  |
|  | 11 | **Deep excavation, backfill, disposal for pond formation** |  | 2025-07-22 | 2027-01-09 |  |  |  |  |  |  |  |  |  |  |  |
| MOD-RCP-ER-002 |  | Mark and fence pond boundary for Rainwater Collection Ponds Zone 1 | 3d | 2025-07-22 A | 2025-09-30 A | MOD-GEI-SF-001, MIL-0006 | 100% |  | 2026-04-20 | 2026-04-23 |  |  | Contract Price Original Scope [5919.63]; Laborer [15.02 h]; Surveyor [7.51 h] | 5,919.63 | 5,919.63 | PO |
| MOD-RCP-ER-003 |  | Excavate in layers to final depth for Rainwater Collection Ponds Zone 1 | 12d | 2025-07-22 A | 2025-09-30 A | MOD-RCP-ER-002 | 100% |  | 2026-04-23 | 2026-05-07 |  |  | Contract Price Original Scope [51585.3]; Excavator Operator [54.55 h]; Laborer [81.82 h] | 51,585.31 | 51,585.31 | PO |
| MOD-RCP-ER-004 |  | Dewater during excavation for Rainwater Collection Ponds Zone 1 | 5d | 2025-11-30 A | 2027-01-02 | MOD-RCP-ER-003 | 90% | 0.5d | 2026-05-06 | 2026-05-12 | 91.9d | 0d | Contract Price Original Scope [50739.7] | 50,739.65 | 45,665.68 | PO |
| MOD-RCP-ER-005 |  | Place warning tapes for Rainwater Collection Ponds Zone 1 | 6d | 2025-12-10 A | 2027-01-03 | MOD-RCP-ER-004 | 80% | 1.2d | 2026-05-12 | 2026-05-19 | 91.9d | 0d | Contract Price Original Scope [12684.9]; Laborer [29.94 h] | 12,684.91 | 10,147.93 | PO |
| MOD-RCP-ER-006 |  | Dispose of rock/materials to approved dump area for Rainwater Collection Ponds Zone 1 | 7d | 2025-12-17 A | 2027-01-04 | MOD-RCP-ER-005 | 80% | 1.4d | 2026-05-19 | 2026-06-01 | 91.9d | 0d | Contract Price Original Scope [42283]; Laborer [31.82 h]; Dump Truck Operator [15.91 h] | 42,283.04 | 33,826.43 | PO |
| MOD-RCP-ER-007 |  | Backfill selected areas as per design for Rainwater Collection Ponds Zone 1 | 2d | 2027-01-04 | 2027-01-06 | MOD-RCP-ER-006, MOD-GEI-PL-001 |  |  |  |  | 91.9d | 0d | Contract Price Original Scope [3382.64]; Excavator Operator [5 h]; Laborer [10 h] | 3,382.64 |  | PO |
| MOD-RCP-ER-008 |  | Final trimming and profiling for Rainwater Collection Ponds Zone 1 | 2d | 2027-01-06 | 2027-01-09 | MOD-RCP-ER-007 |  |  |  |  | 91.9d | 222.9d | Contract Price Original Scope [2536.98]; Grader Operator [5 h]; Laborer [5 h] | 2,536.98 |  | PO |
|  | 1 | **General Site Preparation** |  | 2025-07-22 | 2027-01-16 |  |  |  |  |  |  |  |  |  |  |  |
| MOD-RCP-GS-001 |  | Site demarcation for Rainwater Collection Ponds Zone 1 | 21d | 2025-07-22 A | 2025-07-31 A | MOD-GEI-SF-001, MOD-RCP-ER-002, MOD-RCP-GS-43 | 100% |  | 2026-04-26 | 2026-05-20 |  |  | Contract Price Original Scope [41511.3]; Laborer [31.28 h]; Surveyor [31.28 h] | 41,511.28 | 41,511.28 | PO |
| MOD-RCP-GS-002 |  | Clearing and grubbing for Rainwater Collection Ponds Zone 1 | 21d | 2025-07-22 A | 2025-07-31 A | MOD-RCP-GS-001 | 100% |  | 2026-05-20 | 2026-06-18 |  |  | Contract Price Original Scope [373601]; Excavator Operator [156.4 h]; Laborer [312.79 h] | 373,601.49 | 373,601.49 | PO |
| MOD-RCP-GS-0031 |  | Earthwork excavation (other than topsoil or rock) - Zone 1 (3 Ponds) - P1 | 21d | 2025-07-29 A | 2025-11-13 A | MOD-RCP-GS-002, MOD-RCP-GS-83 | 100% |  | 2026-05-10 | 2026-06-08 |  |  | Contract Price Original Scope [7689674]; Excavator Operator [3219.03 h]; Laborer [3219.03 h] | 7,689,673.88 | 7,689,673.88 | PO |
| MOD-RCP-GS-0041 |  | Transport and disposal to approved locations - Zone 1 (3 Ponds) - P1 | 21d | 2025-09-01 A | 2025-11-19 A | MOD-RCP-GS-0031 | 100% |  | 2026-07-25 | 2026-08-18 |  |  | Contract Price Original Scope [6476303]; Laborer [5630.74 h]; Dump Truck Operator [33784.4 h] | 6,476,302.56 | 6,476,302.56 | PO |
| MOD-RCP-GS-0032 |  | Earthwork excavation (other than topsoil or rock) - Zone 1 (2 Ponds) - P2 | 21d | 2025-11-13 A | 2025-12-10 A | MOD-RCP-GS-0031 SS, MOD-RCP-GS-0031 | 100% |  | 2026-06-22 | 2026-07-16 |  |  | Contract Price Original Scope [5126449]; Excavator Operator [2146.02 h]; Laborer [2146.02 h] | 5,126,449.25 | 5,126,449.25 | PO |
| MOD-RCP-GS-0042 |  | Transport and disposal to approved locations - Zone 1 (2 Ponds) - P2 | 21d | 2025-11-16 A | 2025-12-09 A | MOD-RCP-GS-0041 SS, MOD-RCP-GS-0032 | 100% |  | 2026-06-29 | 2026-07-23 |  |  | Contract Price Original Scope [4317535]; Laborer [3753.82 h]; Dump Truck Operator [22523 h] | 4,317,535.04 | 4,317,535.04 | PO |
| MOD-RCP-GS-0043 |  | Transport and disposal to approved locations - Zone 1 (2 Ponds) - P3 | 21d | 2025-12-08 A | 2027-01-16 | MOD-RCP-GS-0033 | 75% | 5.25d | 2026-06-23 | 2026-07-18 | 65.4d | 0d | Contract Price Original Scope [4317535]; Laborer [3753.82 h]; Dump Truck Operator [22523 h] | 4,317,535.04 | 3,238,151.28 | PO |
| MOD-RCP-GS-0033 |  | Earthwork excavation (other than topsoil or rock) - Zone 1 (2 Ponds) - P3 | 21d | 2025-12-10 A | 2027-01-09 | MOD-RCP-GS-0032 | 75% | 5.25d | 2026-05-25 | 2026-06-23 | 32.35d | 0d | Contract Price Original Scope [5126449]; Excavator Operator [2146.02 h]; Laborer [2146.02 h] | 5,126,449.25 | 3,844,836.94 | PO |

| ID | WBS | Activity | Duration | Start | Finish | Predecessors | Complete | Remaining | Planned start | Planned finish | Total float | Free float | Resources | Cost | Actual cost | MOD-2937 |
| --- | --- | --- | --- | --- | --- | --- | --- | --- | --- | --- | --- | --- | --- | --- | --- | --- |
|  | 2 | **Backfilling Works** |  | 2025-09-03 | 2027-01-21 |  |  |  |  |  |  |  |  |  |  |  |
| MOD-RCP-BW-001 |  | Select material from excavation or import approved material for Rainwater Collection Ponds Zone 1 | 15d | 2025-09-03 A | 2027-01-11 | MOD-RCP-GS-0031, MOD-RCP-GS-0033 | 90% | 1.5d | 2026-09-12 | 2026-09-30 | 32.35d | 0d | Contract Price Original Scope [72388.6] | 72,388.58 | 65,149.72 | PO |
| MOD-RCP-BW-002 |  | Place in layers not exceeding 300mm for Rainwater Collection Ponds Zone 1 | 21d | 2025-09-03 A | 2027-01-13 | MOD-RCP-BW-001, MOD-RCP-GS-0033 | 90% | 2.1d | 2026-09-30 | 2026-10-25 | 80.65d | 0d | Contract Price Original Scope [126680]; Paver Operator [67.57 h]; Laborer [135.14 h] | 126,680.02 | 114,012.01 | PO |
| MOD-RCP-BW-003 |  | Compact each layer to required density for Rainwater Collection Ponds Zone 1 | 20d | 2025-11-16 A | 2027-01-16 | MOD-RCP-BW-002, MOD-RCP-GS-0033 | 90% | 2d | 2026-08-16 | 2026-09-08 | 80.65d | 0d | Contract Price Original Scope [90485.7]; Compactor Operator [50 h]; Laborer [50 h] | 90,485.73 | 81,437.15 | PO |
| MOD-RCP-BW-004 |  | Conduct field density tests for Rainwater Collection Ponds Zone 1 | 4d | 2026-08-01 A | 2027-01-16 | MOD-RCP-BW-003, MOD-RCP-GS-0033 | 90% | 0.4d | 2026-12-03 | 2026-12-08 | 80.65d | 0d | Contract Price Original Scope [54291.4]; Laborer [10 h]; Technician [10 h] | 54,291.44 | 48,862.29 | PO |
| MOD-RCP-BW-005 |  | Final leveling and approval for Rainwater Collection Ponds Zone 1 | 5d | 2027-01-16 | 2027-01-21 | MOD-RCP-BW-004, MOD-RCP-GS-0033 |  |  |  |  | 80.65d | 211.65d | Contract Price Original Scope [18097.2]; Grader Operator [12.5 h]; Surveyor [12.5 h] | 18,097.15 |  | PO |
|  | 12 | **Geotextile & Bedding** |  | 2026-01-07 | 2027-03-09 |  |  |  |  |  |  |  |  |  |  |  |
|  | 13 | **Installation of geotextile lining and coarse sand bedding** |  | 2026-01-07 | 2027-03-09 |  |  |  |  |  |  |  |  |  |  |  |
| MOD-RCP-GB-002 |  | Trim subgrade to required level for Rainwater Collection Ponds Zone 1 | 7d | 2026-01-07 A | 2027-01-14 | MOD-RCP-BW-001, MOD-RCP-GS-0033 | 60% | 2.8d | 2026-06-07 | 2026-06-15 | 32.35d | 0d | Contract Price Original Scope [61411.7]; Grader Operator [17.48 h]; Laborer [17.48 h] | 61,411.71 | 36,847.03 | PO |
| MOD-RCP-GB-003 |  | Lay HDPE geotextile membrane over compacted soil for Rainwater Collection Ponds Zone 1 | 21d | 2026-01-15 A | 2027-01-25 | MOD-RCP-GB-002, MOD-RCP-GS-0033 | 57% | 9.03d | 2026-06-20 | 2026-07-14 | 32.35d | 0d | Contract Price Original Scope [214941]; Laborer [163.64 h] | 214,940.99 | 122,516.37 | PO |
| MOD-RCP-GB-004 |  | Place 500mm thick coarse sand bedding for Rainwater Collection Ponds Zone 1 | 21d | 2026-01-22 A | 2027-02-04 | MOD-RCP-GB-003, MOD-RCP-GS-0033 | 57% | 9.03d | 2026-07-09 | 2026-08-03 | 52.29d | 0d | Contract Price Original Scope [184235]; Paver Operator [52.08 h]; Laborer [104.17 h] | 184,235.14 | 105,014.03 | PO |
| MOD-RCP-GB-005 |  | Compact and level bedding for Rainwater Collection Ponds Zone 1 | 17d | 2027-02-04 | 2027-03-09 | MOD-RCP-GB-004, MOD-RCP-GS-0033 |  |  |  |  | 52.29d | 183.29d | Contract Price Original Scope [153529]; Compactor Operator [42.37 h]; Laborer [42.37 h] | 153,529.28 |  | PO |
|  | 3 | **Concrete Structures** |  | 2026-03-01 | 2026-04-25 |  |  |  |  |  |  |  |  |  |  |  |
|  | 4 | **Construction of pond slab, walls, vertical structures** |  | 2026-03-01 | 2026-04-25 |  |  |  |  |  |  |  |  |  |  |  |
| MOD-RCP-CS-002 |  | Clean the subgrade for Rainwater Collection Ponds Zone 1 | 2d | 2026-03-01 A | 2026-03-04 A | MOD-RCP-GB-003 SS, MOD-RCP-GS-0033 | 100% |  | 2026-08-20 | 2026-08-23 |  |  | Contract Price Original Scope [1593.77]; Laborer [10 h] | 1,593.77 | 1,593.77 | PO |
| MOD-RCP-CS-003 |  | Lay 100mm thick blinding (C15) for Rainwater Collection Ponds Zone 1 | 3d | 2026-03-05 A | 2026-03-07 A | MOD-RCP-CS-002, MOD-RCP-GS-0033 | 100% |  | 2026-08-23 | 2026-08-26 |  |  | Contract Price Original Scope [14343.9]; Concrete Finisher [7.5 h]; Laborer [22.5 h] | 14,343.94 | 14,343.94 | PO |
| MOD-RCP-CS-004 |  | Install formwork and reinforcement for Rainwater Collection Ponds Zone 1 | 8d | 2026-03-11 A | 2026-03-19 A | MOD-RCP-CS-003, MOD-RCP-GS-0033 | 100% |  | 2026-08-26 | 2026-09-05 |  |  | Contract Price Original Scope [49053.7]; Carpenter [40 h]; Steel Fixer [40 h] | 49,053.7 | 49,053.7 | PO |
| MOD-RCP-CS-005 |  | Cast base slab with C20 concrete (300–500mm thick) for Rainwater Collection Ponds Zone 1 | 4d | 2026-03-21 A | 2026-03-24 A | MOD-RCP-CS-004, MOD-RCP-GS-0033 | 100% |  | 2026-09-05 | 2026-09-09 |  |  | Contract Price Original Scope [87238.1]; Concrete Finisher [18.18 h]; Laborer [36.36 h] | 87,238.11 | 87,238.11 | PO |
| MOD-RCP-CS-006 |  | Construct sub-walls (150–300mm thick) for Rainwater Collection Ponds Zone 1 | 7d | 2026-03-24 A | 2026-03-31 A | MOD-RCP-CS-005, MOD-RCP-GS-0033 | 100% |  | 2026-09-09 | 2026-09-17 |  |  | Contract Price Original Scope [24187.6]; Mason [52.5 h]; Laborer [35 h] | 24,187.62 | 24,187.62 | PO |
| MOD-RCP-CS-007 |  | Construct vertical structures (0.2–1.22m wide) for Rainwater Collection Ponds Zone 1 | 9d | 2026-04-01 A | 2026-04-09 A | MOD-RCP-CS-006, MOD-RCP-GS-0033, A102810 | 100% |  | 2026-09-17 | 2026-09-29 |  |  | Contract Price Original Scope [241164]; Crane Operator [20.45 h]; Mason [81.82 h]; Laborer [61.36 h] | 241,164.24 | 241,164.24 | PO |
| MOD-RCP-CS-008 |  | Remove formwork after curing for Rainwater Collection Ponds Zone 1 | 3d | 2026-04-07 A | 2026-04-11 A | MOD-RCP-CS-007, MOD-RCP-GS-0033 | 100% |  | 2026-09-29 | 2026-10-03 |  |  | Contract Price Original Scope [12692.9]; Carpenter [7.51 h]; Laborer [15.02 h] | 12,692.85 | 12,692.85 | PO |
| MOD-RCP-CS-009 |  | Apply power floating finish for Rainwater Collection Ponds Zone 1 | 2d | 2026-04-13 A | 2026-04-15 A | MOD-RCP-CS-008, MOD-RCP-GS-0033 | 100% |  | 2026-10-03 | 2026-10-05 |  |  | Contract Price Original Scope [2186.93]; Concrete Finisher [10 h] | 2,186.93 | 2,186.93 | PO |
| MOD-RCP-CS-010 |  | Apply waterproofing, bitumen, screed, perimeter lining for Rainwater Collection Ponds Zone 1 | 7d | 2026-04-18 A | 2026-04-25 A | MOD-RCP-CS-009, MOD-RCP-GS-0033 | 100% |  | 2026-10-05 | 2026-10-13 |  |  | Contract Price Original Scope [9817.52]; Waterproofing Specialist [47.73 h]; Laborer [31.82 h] | 9,817.52 | 9,817.52 | PO |
|  | 5 | **Energy Dissipation & Siphon Structures** |  | 2025-10-01 | 2025-12-30 |  |  |  |  |  |  |  |  |  |  |  |
|  | 6 | **Siphon pipes, energy dissipators, and associated civil works** |  | 2025-10-01 | 2025-12-30 |  |  |  |  |  |  |  |  |  |  |  |
| MOD-RCP-ED-002 |  | Excavate for low-level areas for Rainwater Collection Ponds Zone 1 | 3d | 2025-10-01 A | 2025-11-30 A | MOD-RCP-CS-007, MOD-RCP-GS-0033 | 100% |  | 2026-10-25 | 2026-10-28 |  |  | Contract Price Original Scope [3569.79]; Excavator Operator [7.5 h]; Laborer [15 h] | 3,569.79 | 3,569.79 | PO |
| MOD-RCP-ED-003 |  | Lay granular bedding and compact for Rainwater Collection Ponds Zone 1 | 11d | 2025-10-01 A | 2025-12-01 A | MOD-RCP-ED-002, MOD-RCP-GS-0033 | 100% |  | 2026-10-28 | 2026-11-10 |  |  | Contract Price Original Scope [31108.2]; Compactor Operator [27.5 h]; Laborer [55 h] | 31,108.2 | 31,108.2 | PO |
| MOD-RCP-ED-004 |  | Install siphon pipe with DI 90° bends for Rainwater Collection Ponds Zone 1 | 10d | 2025-10-01 A | 2025-12-09 A | MOD-RCP-ED-003, MOD-RCP-GS-0033 | 100% |  | 2026-11-10 | 2026-11-22 |  |  | Contract Price Original Scope [30598.2]; Crane Operator [25 h]; Pipefitter [50 h] | 30,598.23 | 30,598.23 | PO |
| MOD-RCP-ED-005 |  | Place coarse gravel tamping for Rainwater Collection Ponds Zone 1 | 8d | 2025-10-01 A | 2025-12-16 A | MOD-RCP-ED-004, MOD-RCP-GS-0033 | 100% |  | 2026-11-22 | 2026-12-01 |  |  | Contract Price Original Scope [25498.5]; Laborer [40 h] | 25,498.53 | 25,498.53 | PO |
| MOD-RCP-ED-006 |  | Construct reinforced concrete side walls for Rainwater Collection Ponds Zone 1 | 6d | 2025-10-01 A | 2025-12-20 A | MOD-RCP-ED-005, MOD-RCP-GS-0033 | 100% |  | 2026-12-01 | 2026-12-08 |  |  | Contract Price Original Scope [7649.56]; Mason [45 h]; Laborer [30 h] | 7,649.56 | 7,649.56 | PO |
| MOD-RCP-ED-007 |  | Brickwork and finishing for Rainwater Collection Ponds Zone 1 | 2d | 2025-10-01 A | 2025-12-23 A | MOD-RCP-ED-006, MOD-RCP-GS-0033 | 100% |  | 2026-12-08 | 2026-12-10 |  |  | Contract Price Original Scope [2039.88]; Mason [10 h]; Laborer [5 h] | 2,039.88 | 2,039.88 | PO |
| MOD-RCP-ED-008 |  | Install energy dissipators (gabion baffles, riprap) for Rainwater Collection Ponds Zone 1 | 2d | 2025-10-01 A | 2025-12-30 A | MOD-RCP-ED-007, MOD-RCP-GS-0033 | 100% |  | 2026-12-10 | 2026-12-13 |  |  | Contract Price Original Scope [1529.91]; Crane Operator [5 h]; Laborer [15 h] | 1,529.91 | 1,529.91 | PO |

| ID | WBS | Activity | Duration | Start | Finish | Predecessors | Complete | Planned start | Planned finish | Total float | Free float | Resources | Cost | Actual cost | MOD-2937 |
| --- | --- | --- | --- | --- | --- | --- | --- | --- | --- | --- | --- | --- | --- | --- | --- |
|  | 4 | **Culvert Structures** |  | 2026-02-03 | 2027-04-06 |  |  |  |  |  |  |  |  |  |  |
| MOD-RCP-CL-001 |  | Excavate trench for culvert for Rainwater Collection Ponds Zone 1 | 1d | 2026-02-03 A | 2026-02-12 A | MOD-RCP-ED-007, MOD-RCP-GS-0033 | 100% | 2026-09-29 | 2026-09-30 |  |  | Contract Price Original Scope [51.62]; Excavator Operator [10 h]; Laborer [20 h] | 51.62 | 51.62 | PO |
| MOD-RCP-CL-002 |  | Compact subgrade and lay granular bedding for Rainwater Collection Ponds Zone 1 | 6d | 2026-02-10 A | 2026-02-17 A | MOD-RCP-CL-001, MOD-RCP-GS-0033 | 100% | 2026-09-30 | 2026-10-07 |  |  | Contract Price Original Scope [449.81]; Compactor Operator [60.02 h]; Laborer [120.03 h] | 449.81 | 449.81 | PO |
| MOD-RCP-CL-003 |  | Place precast box culverts (all sizes) for Rainwater Collection Ponds Zone 1 | 4d | 2026-02-18 A | 2026-02-25 A | MOD-RCP-CL-002, MOD-RCP-GS-0033 | 100% | 2026-10-07 | 2026-10-12 |  |  | Contract Price Original Scope [442.43]; Crane Operator [40 h]; Laborer [120 h] | 442.43 | 442.43 | PO |
| MOD-RCP-CL-004 |  | Align and joint culverts with sealing material for Rainwater Collection Ponds Zone 1 | 3d | 2026-02-23 A | 2026-02-28 A | MOD-RCP-CL-003, MOD-RCP-GS-0033 | 100% | 2026-10-12 | 2026-10-15 |  |  | Contract Price Original Scope [368.69]; Pipefitter [59.99 h]; Laborer [30 h] | 368.69 | 368.69 | PO |
| MOD-RCP-CL-005 |  | Place backfill around and above culvert for Rainwater Collection Ponds Zone 1 | 2d | 2026-04-04 A | 2026-04-11 A | MOD-RCP-CL-004, MOD-RCP-GS-0033 | 100% | 2026-10-15 | 2026-10-18 |  |  | Contract Price Original Scope [110.61]; Excavator Operator [20 h]; Laborer [40 h] | 110.61 | 110.61 | PO |
| MOD-RCP-CL-006 |  | Compact in layers and test for Rainwater Collection Ponds Zone 1 | 2d | 2026-04-09 A | 2026-04-18 A | MOD-RCP-CL-005, MOD-RCP-GS-0033 | 100% | 2026-10-18 | 2026-10-20 |  |  | Contract Price Original Scope [29.5]; Compactor Operator [20 h]; Technician [20 h] | 29.5 | 29.5 | PO |
| MOD-RCP-CL-007 |  | Final surface leveling and protection for Rainwater Collection Ponds Zone 1 | 4d | 2026-04-15 A | 2026-04-25 A | MOD-RCP-CL-006, MOD-RCP-GS-0033 | 100% | 2026-10-20 | 2026-10-25 |  |  | Contract Price Original Scope [22.12]; Grader Operator [40 h]; Laborer [40 h] | 22.12 | 22.12 | PO |
|  | 8 | **Access Roads** |  | 2027-01-14 | 2027-04-06 |  |  |  |  |  |  |  |  |  |  |
|  | 9 | **Construct 3m & 5m wide roads** |  | 2027-01-14 | 2027-04-06 |  |  |  |  |  |  |  |  |  |  |
| MOD-RCP-AR-002 |  | Clear and grade road alignment for Rainwater Collection Ponds Zone 1 | 3d | 2027-01-14 | 2027-01-18 | MOD-RCP-CL-005, MOD-RCP-GS-0033 |  |  |  | 32.35d | 0d | Contract Price Original Scope [68159]; Grader Operator [130.65 h]; Laborer [261.3 h] | 68,158.99 |  | PO |
| MOD-RCP-AR-003 |  | Excavate and level subgrade for Rainwater Collection Ponds Zone 1 | 15d | 2027-01-18 | 2027-02-04 | MOD-RCP-AR-002, MOD-RCP-GS-0033 |  |  |  | 32.35d | 0d | Contract Price Original Scope [238556]; Excavator Operator [136.36 h]; Grader Operator [136.36 h] | 238,556.46 |  | PO |
| MOD-RCP-AR-004 |  | Place and compact subbase for Rainwater Collection Ponds Zone 1 | 17d | 2027-02-04 | 2027-03-09 | MOD-RCP-AR-003, MOD-RCP-GS-0033 |  |  |  | 32.35d | 0d | Contract Price Original Scope [204477]; Compactor Operator [154.55 h]; Dozer Operator [154.55 h] | 204,476.97 |  | PO |
| MOD-RCP-AR-005 |  | Lay base course for Rainwater Collection Ponds Zone 1 | 23d | 2027-02-09 | 2027-03-24 | MOD-RCP-AR-004 SS+3d, MOD-RCP-GS-0033 |  |  |  | 32.35d | 0d | Contract Price Original Scope [272636]; Dozer Operator [209.09 h]; Laborer [627.27 h] | 272,635.96 |  | PO |
| MOD-RCP-AR-006 |  | Apply asphalt (if applicable) or gravel surfacing for Rainwater Collection Ponds Zone 1 | 21d | 2027-02-23 | 2027-03-30 | MOD-RCP-AR-005 SS+7d, MOD-RCP-GS-0033 |  |  |  | 32.35d | 0d | Contract Price Original Scope [545272]; Laborer [1567.79 h] | 545,271.91 |  | PO |
| MOD-RCP-AR-007 |  | Finish shoulders and install signage if required for Rainwater Collection Ponds Zone 1 | 6d | 2027-03-30 | 2027-04-06 | MOD-RCP-AR-006, MOD-RCP-GS-0033 |  |  |  | 32.35d | 163.35d | Contract Price Original Scope [34079.5]; Laborer [109.09 h] | 34,079.49 |  | PO |
|  | 3 | **Road Crossing Zone 1** |  | 2027-04-08 | 2027-10-19 |  |  |  |  |  |  |  |  |  |  |
|  | 14 | **uPVC Road Crossing Pipes** |  | 2027-04-08 | 2027-08-18 |  |  |  |  |  |  |  |  |  |  |
|  | 15 | **Installation of uPVC pipes of various diameters crossing roadways** |  | 2027-04-08 | 2027-08-18 |  |  |  |  |  |  |  |  |  |  |
| MOD-ROC-PV-100 |  | Demarcation and traffic diversion (if required) for Road Crossing Zone 1 | 6d | 2027-04-08 | 2027-04-14 | MOD-GEI-SF-001, MOD-ROC-PV-90, MOD-RCP-ER-002 |  |  |  | -79d | 0d | Contract Price Original Scope [60142.2]; Laborer [43.64 h]; Surveyor [21.82 h] | 60,142.24 |  | RD |
| MOD-ROC-PV-110 |  | Saw cutting and removal of asphalt (if applicable) for Road Crossing Zone 1 | 12d | 2027-04-15 | 2027-04-28 | MOD-ROC-PV-100 |  |  |  | -79d | 0d | Contract Price Original Scope [120284]; Road Cutter Operator [328.56 h]; Laborer [657.12 h] | 120,284.48 |  | RD |
| MOD-ROC-PV-120 |  | Excavation across road width to required depth for Road Crossing Zone 1 | 21d | 2027-04-29 | 2027-05-27 | MOD-ROC-PV-110, A1600 |  |  |  | -79d | 0d | Contract Price Original Scope [180427]; Excavator Operator [328.56 h]; Laborer [657.12 h] | 180,426.71 |  | RD |
| MOD-ROC-PV-130 |  | Preparation of trench base with compacted bedding for Road Crossing Zone 1 | 15d | 2027-05-29 | 2027-06-14 | MOD-ROC-PV-120 |  |  |  | -79d | 0d | Contract Price Original Scope [120284]; Compactor Operator [54.55 h]; Laborer [109.09 h] | 120,284.48 |  | RD |
| MOD-ROC-PV-140 |  | Laying of uPVC pipe (300mm, 315mm, 400mm, 600mm dia) for Road Crossing Zone 1 | 21d | 2027-06-15 | 2027-07-08 | MOD-ROC-PV-130 |  |  |  | -79d | 0d | Contract Price Original Scope [481138]; Crane Operator [98.18 h]; Plumber [196.36 h] | 481,137.9 |  | RD |
| MOD-ROC-PV-150 |  | Placement of supports and protection around the pipe for Road Crossing Zone 1 | 10d | 2027-07-10 | 2027-07-20 | MOD-ROC-PV-140 |  |  |  | -79d | 0d | Contract Price Original Scope [120284]; Carpenter [36.36 h]; Laborer [72.73 h] | 120,284.48 |  | RD |
| MOD-ROC-PV-160 |  | Testing of installed pipeline for Road Crossing Zone 1 | 6d | 2027-07-21 | 2027-07-27 | MOD-ROC-PV-150 |  |  |  | -79d | 0d | Contract Price Original Scope [30071.1]; Technician [24 h]; Plumber [48 h] | 30,071.12 |  | RD |
| MOD-ROC-PV-170 |  | Backfilling and compaction in layers for Road Crossing Zone 1 | 13d | 2027-07-28 | 2027-08-11 | MOD-ROC-PV-160, MOD-GEI-PL-001 |  |  |  | -79d | 0d | Contract Price Original Scope [60142.2]; Compactor Operator [219.04 h]; Laborer [438.08 h] | 60,142.24 |  | RD |
| MOD-ROC-PV-180 |  | Reinstatement of road surface for Road Crossing Zone 1 | 6d | 2027-08-12 | 2027-08-18 | MOD-ROC-PV-170 |  |  |  | -79d | 52d | Contract Price Original Scope [30071.1]; Paver Operator [328.56 h]; Laborer [657.12 h] | 30,071.12 |  | RD |

| ID | WBS | Activity | Duration | Start | Finish | Predecessors | Complete | Planned start | Planned finish | Total float | Free float | Calendar | Resources | Cost | Actual cost | MOD-2937 |
| --- | --- | --- | --- | --- | --- | --- | --- | --- | --- | --- | --- | --- | --- | --- | --- | --- |
|  | 16 | **GRP Road Crossing Pipes** |  | 2027-08-03 | 2027-10-19 |  |  |  |  |  |  |  |  |  |  |  |
|  | 17 | **Installation of GRP pipes (800mm–1000mm dia) for road crossings** |  | 2027-08-03 | 2027-10-19 |  |  |  |  |  |  |  |  |  |  |  |
| MOD-ROC-GR-100 |  | Set out location and coordinate with road authority for Road Crossing Zone 1 | 5d | 2027-08-03 | 2027-08-08 | MOD-ROC-PV-100, MOD-ROC-GR-90 |  |  |  | -131d | 0d |  | Contract Price Original Scope [22656.7]; Laborer [84.08 h]; Surveyor [84.08 h] | 22,656.74 |  | RD |
| MOD-ROC-GR-110 |  | Excavate trench across road at designed depth for Road Crossing Zone 1 | 8d | 2027-08-09 | 2027-08-17 | MOD-ROC-GR-100 |  |  |  | -131d | 0d |  | Contract Price Original Scope [45313.5]; Excavator Operator [84.08 h]; Laborer [168.16 h] | 45,313.48 |  | RD |
| MOD-ROC-GR-120 |  | Lay compacted granular bedding for Road Crossing Zone 1 | 8d | 2027-08-18 | 2027-08-26 | MOD-ROC-GR-110 |  |  |  | -131d | 0d |  | Contract Price Original Scope [67970.2]; Compactor Operator [58.18 h]; Laborer [116.36 h] | 67,970.22 |  | RD |
| MOD-ROC-GR-130 |  | Install GRP pipe (800mm & 1000mm dia) for Road Crossing Zone 1 | 10d | 2027-08-28 | 2027-09-07 | MOD-ROC-GR-120 |  |  |  | -131d | 0d |  | Contract Price Original Scope [181254]; Crane Operator [134.55 h]; Pipefitter [269.09 h] | 181,253.92 |  | RD |
| MOD-ROC-GR-140 |  | Provide structural supports and closure at both ends for Road Crossing Zone 1 | 9d | 2027-09-08 | 2027-09-18 | MOD-ROC-GR-130, A102810 |  |  |  | -131d | 0d |  | Contract Price Original Scope [45313.5]; Carpenter [32.73 h]; Laborer [65.45 h] | 45,313.48 |  | RD |
| MOD-ROC-GR-150 |  | Perform leak testing as per specifications for Road Crossing Zone 1 | 5d | 2027-09-19 | 2027-09-25 | MOD-ROC-GR-140 |  |  |  | -131d | 0d |  | Contract Price Original Scope [11328.4]; Technician [20 h]; Plumber [40 h] | 11,328.37 |  | RD |
| MOD-ROC-GR-160 |  | Backfill and compact in layers for Road Crossing Zone 1 | 8d | 2027-09-26 | 2027-10-04 | MOD-ROC-GR-150, MOD-GEI-PL-001 |  |  |  | -131d | 0d |  | Contract Price Original Scope [45313.5]; Compactor Operator [54.55 h]; Laborer [109.09 h] | 45,313.48 |  | RD |
| MOD-ROC-GR-170 |  | Reinstate road surface (asphalt/concrete) for Road Crossing Zone 1 | 8d | 2027-10-05 | 2027-10-13 | MOD-ROC-GR-160 |  |  |  | -131d | 0d |  | Contract Price Original Scope [22656.7]; Paver Operator [84.08 h]; Laborer [168.16 h] | 22,656.74 |  | RD |
| MOD-ROC-GR-180 |  | Final inspection and approval by relevant authority for Road Crossing Zone 1 | 5d | 2027-10-14 | 2027-10-19 | MOD-ROC-GR-170 |  |  |  | -131d | 0d |  | Contract Price Original Scope [11328.4]; Surveyor [20 h]; Technician [20 h] | 11,328.37 |  | RD |
|  | 1 | **General** |  | 2025-05-19 | 2027-10-10 |  |  |  |  |  |  |  |  |  |  |  |
|  | 5 | **General Items** |  | 2025-05-19 | 2025-08-07 |  |  |  |  |  |  |  |  |  |  |  |
|  | 1 | **Site Setup & Facilities** |  | 2025-05-19 | 2025-06-18 |  |  |  |  |  |  |  |  |  |  |  |
| MOD-GEI-SF-001 |  | Equip, install, and set up site offices | 30d | 2025-05-19 A | 2025-06-18 A | MIL-0001 | 100% | 2025-05-19 | 2025-06-17 |  |  | MOD- 7D | Contract Price Original Scope [53699] | 53,699.01 | 53,699.01 |  |
|  | 2 | **Project Laboratory** |  | 2025-06-18 | 2025-08-07 |  |  |  |  |  |  |  |  |  |  |  |
| MOD-GEI-PL-001 |  | Equip, install, and set up project laboratory | 30d | 2025-06-18 A | 2025-08-07 A | MOD-GEI-SF-001 SS | 100% | 2025-05-19 | 2025-06-17 |  |  | MOD- 7D | Contract Price Original Scope [108531] | 108,530.62 | 108,530.62 |  |
|  | 3 | **Local Roads** |  | 2026-08-01 | 2027-06-09 |  |  |  |  |  |  |  |  |  |  |  |
|  | 1 | **Bituminous Construction** |  | 2027-04-07 | 2027-05-01 |  |  |  |  |  |  |  |  |  |  |  |
|  | 1 | **Bituminous Foundation Layer (MC 1)** |  | 2027-04-07 | 2027-04-15 |  |  |  |  |  |  |  |  |  |  |  |
| MOD-LOR-BC-002 |  | Prepare subgrade for Local Roads | 4d | 2027-04-07 | 2027-04-11 | MOD-GEI-SF-001, MOD-ARR-PC-006 |  |  |  | -40d | 0d |  | Contract Price Original Scope [217.04]; Grader Operator [40 h]; Laborer [80 h] | 217.04 |  | RD |
| MOD-LOR-BC-003 |  | Apply MC 1 bituminous layer for Local Roads | 4d | 2027-04-12 | 2027-04-15 | MOD-LOR-BC-002, A1160, A102730 SS, A103740 SS |  |  |  | -40d | 0d |  | Contract Price Original Scope [217.04]; Paver Operator [40 h]; Laborer [80 h] | 217.04 |  | RD |
|  | 2 | **Bituminous Base Layer (Grade 1 - Class A, 70mm)** |  | 2027-04-17 | 2027-04-21 |  |  |  |  |  |  |  |  |  |  |  |
| MOD-LOR-BC-005 |  | Spread and compact bituminous mix for Local Roads | 5d | 2027-04-17 | 2027-04-21 | MOD-LOR-BC-003 |  |  |  | -40d | 0d |  | Contract Price Original Scope [28499.2]; Compactor Operator [50 h]; Laborer [100.01 h] | 28,499.23 |  | RD |

| ID | WBS | Activity | Duration | Start | Finish | Predecessors | Complete | Remaining | Planned start | Planned finish | Total float | Free float | Resources | Cost | Actual cost | MOD-2937 |
| --- | --- | --- | --- | --- | --- | --- | --- | --- | --- | --- | --- | --- | --- | --- | --- | --- |
|  | 3 | **Bituminous Top Layer (Grade 1 - Class A, 50mm)** |  | 2027-04-22 | 2027-05-01 |  |  |  |  |  |  |  |  |  |  |  |
| MOD-LOR-BC-007 |  | Apply adhesive layer (R.C) for Local Roads | 4d | 2027-04-22 | 2027-04-26 | MOD-LOR-BC-005 |  |  |  |  | -40d | 0d | Contract Price Original Scope [22288.8]; Laborer [80 h] | 22,288.84 |  | RD |
| MOD-LOR-BC-008 |  | Spread and compact bituminous concrete for Local Roads | 4d | 2027-04-27 | 2027-05-01 | MOD-LOR-BC-007 |  |  |  |  | -40d | 0d | Contract Price Original Scope [22288.8]; Compactor Operator [40 h]; Laborer [80 h] | 22,288.84 |  | RD |
|  | 2 | **Precast Curbs (Type K1-D)** |  | 2026-08-01 | 2027-06-09 |  |  |  |  |  |  |  |  |  |  |  |
| MOD-LOR-PC-001 |  | Excavation & Subgrade Preparation for Local Roads | 8d | 2026-08-01 A | 2027-05-05 | MOD-LOR-BC-008, A1600 | 50% | 4d | 2027-05-04 | 2027-05-18 | -40d | 0d | Contract Price Original Scope [1566.73] | 1,566.73 | 783.37 | RD |
| MOD-LOR-PC-002 |  | Pour concrete base & hunching for Local Roads | 8d | 2026-08-11 A | 2027-05-10 | MOD-LOR-PC-001 | 50% | 4d | 2027-05-18 | 2027-05-27 | -40d | 0d | Contract Price Original Scope [1566.73]; Mason [160 h]; Laborer [160 h] | 1,566.73 | 783.37 | RD |
| MOD-LOR-PC-003 |  | Install precast curbs for Local Roads | 20d | 2026-08-18 A | 2027-05-26 | MOD-LOR-PC-002, A102820 | 50% | 10d | 2027-05-27 | 2027-06-20 | -40d | 0d | Contract Price Original Scope [4177.95]; Crane Operator [200.01 h]; Mason [400.02 h] | 4,177.95 | 2,088.98 | RD |
| MOD-LOR-PC-004 |  | Backfill & compact for Local Roads | 8d | 2026-09-01 A | 2027-05-31 | MOD-LOR-PC-003, A102400, A102820, MOD-GEI-PL-001 | 50% | 4d | 2027-06-20 | 2027-06-29 | -40d | 0d | Contract Price Original Scope [1566.73]; Compactor Operator [80 h]; Laborer [160 h] | 1,566.73 | 783.37 | RD |
| MOD-LOR-PC-005 |  | Finishing & Waste Disposal for Local Roads | 8d | 2027-06-01 | 2027-06-09 | MOD-LOR-PC-004 |  |  |  |  | -40d | 0d | Contract Price Original Scope [1566.73] | 1,566.73 |  | RD |
|  | 2 | **Arterial Roads** |  | 2026-06-27 | 2027-04-06 |  |  |  |  |  |  |  |  |  |  |  |
|  | 1 | **Earthworks** |  | 2027-01-16 | 2027-01-18 |  |  |  |  |  |  |  |  |  |  |  |
| MOD-ARR-EW-001 |  | Clear vegetation for Arterial Roads | 1d | 2027-01-16 | 2027-01-17 | MOD-GEI-SF-001, MOD-ROC-PV-006 |  |  |  |  | -40d | 0d | Contract Price Original Scope [8046.29]; Excavator Operator [10 h]; Laborer [20 h] | 8,046.28 |  | RD |
| MOD-ARR-EW-002 |  | Site Grading for Arterial Roads | 1d | 2027-01-17 | 2027-01-18 | MOD-ARR-EW-001 |  |  |  |  | -40d | 0d | Contract Price Original Scope [8046.29]; Grader Operator [9.09 h]; Laborer [18.18 h] | 8,046.28 |  | RD |
|  | 2 | **Precast Curbs (Type K1-D)** |  | 2026-06-27 | 2027-04-06 |  |  |  |  |  |  |  |  |  |  |  |
| MOD-ARR-PC-001 |  | Excavation & Subgrade Prep for Arterial Roads | 8d | 2026-06-27 A | 2027-01-24 | MOD-ARR-EW-002, A1600 | 35% | 5.2d | 2026-09-26 | 2026-10-04 | -40d | 0d | Contract Price Original Scope [46352.4] | 46,352.38 | 16,223.33 | RD |
| MOD-ARR-PC-002 |  | Concrete Base & Hunching for Arterial Roads | 8d | 2026-06-29 A | 2027-01-31 | MOD-ARR-PC-001, A103790, A103810 | 25% | 6d | 2026-10-05 | 2026-10-13 | -40d | 0d | Contract Price Original Scope [46352.4]; Mason [160 h]; Laborer [160 h] | 46,352.38 | 11,588.09 | RD |
| MOD-ARR-PC-003 |  | Curb Installation for Arterial Roads | 21d | 2026-07-01 A | 2027-03-02 | MOD-ARR-PC-002, A102820 | 20% | 16.8d | 2026-10-14 | 2026-11-07 | -40d | 0d | Contract Price Original Scope [231762]; Crane Operator [345.45 h]; Mason [690.91 h] | 231,761.9 | 46,352.38 | RD |
| MOD-ARR-PC-004 |  | Backfilling & Compaction for Arterial Roads | 8d | 2027-03-02 | 2027-03-18 | MOD-ARR-PC-003, A102400, A102820, MOD-GEI-PL-001 |  |  |  |  | -40d | 0d | Contract Price Original Scope [46352.4] | 46,352.38 |  | RD |
| MOD-ARR-PC-005 |  | Finishing for Arterial Roads | 8d | 2027-03-20 | 2027-03-28 | MOD-ARR-PC-004 |  |  |  |  | -40d | 0d | Contract Price Original Scope [46352.4]; Mason [80 h]; Laborer [160 h] | 46,352.38 |  | RD |
| MOD-ARR-PC-006 |  | Waste Disposal for Arterial Roads | 8d | 2027-03-29 | 2027-04-06 | MOD-ARR-PC-005 |  |  |  |  | -40d | 0d | Contract Price Original Scope [46352.4] | 46,352.38 |  | RD |
|  | 4 | **Communications** |  | 2025-11-04 | 2027-04-29 |  |  |  |  |  |  |  |  |  |  |  |
|  | 1 | **Ductworks** |  | 2025-11-04 | 2027-04-11 |  |  |  |  |  |  |  |  |  |  |  |
|  | 1 | **Concrete-Protected Service Culverts (50mm, 8 Outlets)** |  | 2025-11-04 | 2027-03-30 |  |  |  |  |  |  |  |  |  |  |  |
| MOD-COC-DW-002 |  | Trench Excavation for Communications | 10d | 2025-11-04 A | 2027-02-24 | MOD-GEI-SF-001, A102260, A102790, MOD-ROC-PV-010 | 96% | 0.4d | 2026-09-26 | 2026-10-07 | -134.66d | 0d | Contract Price Original Scope [1749035]; Excavator Operator [4444.15 h]; Laborer [8888.29 h] | 1,749,034.71 | 1,679,073.32 | CM |
| MOD-COC-DW-003 |  | Culvert Installation & Concrete Protection for Communications | 18d | 2025-11-08 A | 2027-02-28 | MOD-COC-DW-002 | 93% | 1.26d | 2026-10-12 | 2026-11-02 | -134.66d | 0d | Contract Price Original Scope [2915058]; Crane Operator [238.1 h]; Carpenter [238.1 h]; Mason [476.19 h] | 2,915,057.85 | 2,711,003.8 | CM |
| MOD-COC-DW-004 |  | Backfilling & Compaction for Communications | 21d | 2025-11-10 A | 2027-03-04 | MOD-COC-DW-003, MOD-GEI-PL-001 | 88% | 2.52d | 2026-11-02 | 2026-11-26 | -134.66d | 0d | Contract Price Original Scope [583012] | 583,011.57 | 513,050.18 | CM |
| MOD-COC-DW-005 |  | Testing & Restoration for Communications | 21d | 2026-10-27 A | 2027-03-30 | MOD-COC-DW-004 | 24% | 15.96d | 2027-03-06 | 2027-04-05 | 11.55d | 0d | Contract Price Original Scope [583012]; Laborer [10 h]; Technician [20 h] | 583,011.57 | 139,922.78 | CM |

| ID | WBS | Activity | Duration | Start | Finish | Predecessors | Complete | Remaining | Planned start | Planned finish | Total float | Free float | Resources | Cost | Actual cost | MOD-2937 |
| --- | --- | --- | --- | --- | --- | --- | --- | --- | --- | --- | --- | --- | --- | --- | --- | --- |
|  | 2 | **Road Crossing Ducts (Exit 8)** |  | 2025-12-01 | 2027-04-11 |  |  |  |  |  |  |  |  |  |  |  |
| MOD-COC-DW-007 |  | Horizontal Directional Drilling (HDD) for Communications | 21d | 2025-12-01 A | 2027-04-01 | MOD-COC-DW-003, MOD-COC-DW-005 | 90% | 2.1d | 2026-11-18 | 2026-12-13 | 11.55d | 0d | Contract Price Original Scope [355281]; Technician [263.64 h] | 355,280.83 | 319,752.75 | CM |
| MOD-COC-DW-008 |  | Duct Installation & Joint Sealing for Communications | 15d | 2025-12-09 A | 2027-04-03 | MOD-COC-DW-007, A102050, A102770 | 90% | 1.5d | 2027-04-10 | 2027-04-26 | 11.55d | 0d | Contract Price Original Scope [355281]; Pipefitter [588.24 h]; Laborer [294.12 h] | 355,280.83 | 319,752.75 | CM |
| MOD-COC-DW-009 |  | Asphalt/Paving Restoration for Communications | 15d | 2026-04-01 A | 2027-04-11 | MOD-COC-DW-008, A1160, A102730 SS, A103740 SS, A103750 SS | 56% | 6.6d | 2027-03-22 | 2027-04-08 | 11.55d | 0d | Contract Price Original Scope [177640] | 177,640.41 | 99,478.63 | CM |
|  | 3 | **Manholes (Telecom, 2000x1000x1001mm)** |  | 2025-11-23 | 2027-04-29 |  |  |  |  |  |  |  |  |  |  |  |
| MOD-COC-MH-001 |  | Excavation & Dewatering for Communications | 16d | 2025-11-23 A | 2026-03-14 A | MOD-COC-DW-002, MOD-COC-DW-009, A1600 | 100% |  | 2027-06-29 | 2027-07-18 |  |  | Contract Price Original Scope [1997164]; Excavator Operator [14.57 h]; Pump Operator [14.57 h]; Laborer [29.13 h] | 1,997,164.09 | 1,997,164.09 | CM |
| MOD-COC-MH-002 |  | Concrete Works - Foundation - Wall - Roof for Communications | 10d | 2025-12-16 A | 2027-04-11 | MOD-COC-MH-001, A102050, A102770, A103790, A103810, A103860 | 99% | 0.1d | 2027-05-25 | 2027-06-06 | 11.55d | 0d | Contract Price Original Scope [1198298]; Mason [200 h]; Laborer [200 h] | 1,198,298.45 | 1,186,315.47 | CM |
| MOD-COC-MH-003 |  | Frame/Cover Installation for Communications | 21d | 2025-12-17 A | 2027-04-11 | MOD-COC-MH-002, A102050, A102770 | 99% | 0.21d | 2027-06-06 | 2027-06-30 | 11.55d | 0d | Contract Price Original Scope [599149]; Crane Operator [450.01 h]; Laborer [900.01 h] | 599,149.23 | 593,157.73 | CM |
| MOD-COC-MH-004 |  | Testing & Handover for Communications | 16d | 2027-04-11 | 2027-04-29 | MOD-COC-MH-003 |  |  |  |  | 11.55d | 0d | Contract Price Original Scope [199716]; Surveyor [160 h]; Technician [320 h] | 199,716.41 |  | CM |
|  | 11 | **Landscape** |  | 2027-02-28 | 2027-10-10 |  |  |  |  |  |  |  |  |  |  |  |
|  | 1 | **Supply & Planting of Trees and Shrubs** |  | 2027-04-07 | 2027-08-05 |  |  |  |  |  |  |  |  |  |  |  |
|  | 15 | **planting of trees, shrubs, and vines** |  | 2027-04-07 | 2027-08-05 |  |  |  |  |  |  |  |  |  |  |  |
| MOD-LNS-PT-002 |  | Site demarcation and marking of plant locations for Landscape | 8d | 2027-04-07 | 2027-04-17 | MOD-LNS-GL-005 SS, MOD-COC-DW-004 SS |  |  |  |  | -143.3d | 0d | Contract Price Original Scope [96450.2] | 96,450.19 |  | LS |
| MOD-LNS-PT-003 |  | Excavation of planting pits as per specification for Landscape | 16d | 2027-04-17 | 2027-05-05 | MOD-LNS-PT-002, A1600 |  |  |  |  | -143.3d | 0d | Contract Price Original Scope [192900] | 192,900.39 |  | LS |
| MOD-LNS-PT-004 |  | Placement of sweet soil/potting soil as required for Landscape | 21d | 2027-05-05 | 2027-06-03 | MOD-LNS-PT-003, A102390 |  |  |  |  | -143.3d | 0d | Contract Price Original Scope [289351]; Laborer [476.19 h]; Dump Truck Operator [238.1 h] | 289,350.58 |  | LS |
| MOD-LNS-PT-005 |  | Placement of gravel bed for drainage (if applicable) for Landscape | 16d | 2027-06-03 | 2027-06-22 | MOD-LNS-PT-004, A102390 |  |  |  |  | -143.3d | 0d | Contract Price Original Scope [192900]; Compactor Operator [161.29 h]; Laborer [322.58 h] | 192,900.39 |  | LS |
| MOD-LNS-PT-006 |  | Planting of Palm tree, shrubs and trees for Landscape | 6d | 2027-06-22 | 2027-06-29 | MOD-LNS-PT-005, A102390 |  |  |  |  | -143.3d | 0d | Contract Price Original Scope [771602]; Crane Operator [54.55 h]; Landscaper [109.09 h] | 771,601.55 |  | LS |
| MOD-LNS-PT-007 |  | Backfilling and compacting around the plant base for Landscape | 4d | 2027-06-29 | 2027-07-04 | MOD-LNS-PT-006, MOD-GEI-PL-001 |  |  |  |  | -88.3d | 0d | Contract Price Original Scope [48225.1] | 48,225.1 |  | LS |
| MOD-LNS-PT-008 |  | Installation of semi-permeable membrane (if required) for Landscape | 16d | 2027-07-04 | 2027-07-22 | MOD-LNS-PT-007 |  |  |  |  | -88.3d | 0d | Contract Price Original Scope [192900]; Landscaper [161.29 h]; Laborer [322.58 h] | 192,900.39 |  | LS |
| MOD-LNS-PT-009 |  | Initial watering and mulching for Landscape | 8d | 2027-07-22 | 2027-08-01 | MOD-LNS-PT-008 |  |  |  |  | -88.3d | 0d | Contract Price Original Scope [96450.2]; Water Truck Operator [80 h]; Laborer [160 h] | 96,450.19 |  | LS |
| MOD-LNS-PT-010 |  | Labeling/tagging (if specified) for Landscape | 4d | 2027-08-01 | 2027-08-05 | MOD-LNS-PT-009 |  |  |  |  | -88.3d | 55d | Contract Price Original Scope [48225.1]; Laborer [40 h] | 48,225.1 |  | LS |
|  | 16 | **Gravel Layer and Bed Preparation** |  | 2027-02-28 | 2027-05-01 |  |  |  |  |  |  |  |  |  |  |  |
|  | 17 | **Installation of gravel layers and soil beds to support planting and drainage.** |  | 2027-02-28 | 2027-05-01 |  |  |  |  |  |  |  |  |  |  |  |
| MOD-LNS-GL-002 |  | Grading of planting areas for Landscape | 2d | 2027-02-28 | 2027-03-03 | MOD-GEI-SF-001, MOD-COC-DW-004 SS |  |  |  |  | -134.66d | 0d | Contract Price Original Scope [4331.7]; Grader Operator [20 h]; Laborer [40 h] | 4,331.7 |  | LS |
| MOD-LNS-GL-003 |  | Excavation to required depth for Landscape | 5d | 2027-03-03 | 2027-03-16 | MOD-LNS-GL-002, A1600 |  |  |  |  | -134.66d | 8.64d | Contract Price Original Scope [8663.4] | 8,663.4 |  | LS |
| MOD-LNS-GL-004 |  | Placement of 50mm gravel layer for green areas for Landscape | 10d | 2027-03-27 | 2027-04-07 | MOD-LNS-GL-003, A102390 |  |  |  |  | -143.3d | 0d | Contract Price Original Scope [25990.2]; Laborer [200 h]; Dump Truck Operator [100 h] | 25,990.19 |  | LS |
| MOD-LNS-GL-005 |  | Placement of 150mm gravel bed for drainage network for Landscape | 6d | 2027-04-07 | 2027-04-14 | MOD-LNS-GL-004, A102390 |  |  |  |  | -143.3d | 0d | Contract Price Original Scope [12995.1]; Compactor Operator [60 h]; Laborer [120 h] | 12,995.1 |  | LS |
| MOD-LNS-GL-006 |  | Spreading and compacting the gravel for Landscape | 6d | 2027-04-14 | 2027-04-21 | MOD-LNS-GL-005 |  |  |  |  | -9.3d | 0d | Contract Price Original Scope [12995.1]; Compactor Operator [59.88 h]; Laborer [119.76 h] | 12,995.1 |  | LS |
| MOD-LNS-GL-007 |  | Overlay of semi-permeable membrane (if applicable) for Landscape | 4d | 2027-04-21 | 2027-04-26 | MOD-LNS-GL-006 |  |  |  |  | -9.3d | 0d | Contract Price Original Scope [10829.2]; Landscaper [36.36 h]; Laborer [72.73 h] | 10,829.25 |  | LS |
| MOD-LNS-GL-008 |  | Spreading of potting soil/sweet soil as top layer for Landscape | 4d | 2027-04-26 | 2027-05-01 | MOD-LNS-GL-007 |  |  |  |  | -9.3d | 134d | Contract Price Original Scope [10829.2]; Laborer [80 h]; Dump Truck Operator [40 h] | 10,829.25 |  | LS |

| ID | WBS | Activity | Duration | Start | Finish | Predecessors | Complete | Remaining | Planned start | Planned finish | Total float | Free float | Resources | Cost | Actual cost | MOD-2937 |
| --- | --- | --- | --- | --- | --- | --- | --- | --- | --- | --- | --- | --- | --- | --- | --- | --- |
|  | 2 | **Landscape Irrigation System** |  | 2027-06-29 | 2027-10-10 |  |  |  |  |  |  |  |  |  |  |  |
|  | 17 | **Design, supply, and installation of irrigation lines for arterial road landscape zones.** |  | 2027-06-29 | 2027-10-10 |  |  |  |  |  |  |  |  |  |  |  |
| MOD-LNS-LI-002 |  | Approval of design and layout by Owner/Engineer for Landscape | 7d | 2027-06-29 | 2027-07-07 | MOD-LNS-PT-006 |  |  |  |  | -143.3d | 0d | Contract Price Original Scope [82159.9] | 82,159.93 |  | LS |
| MOD-LNS-LI-003 |  | Excavation for main and lateral lines for Landscape | 14d | 2027-07-07 | 2027-07-24 | MOD-LNS-LI-002, A1600 |  |  |  |  | -143.3d | 0d | Contract Price Original Scope [164320]; Excavator Operator [139.82 h]; Laborer [279.65 h] | 164,319.86 |  | LS |
| MOD-LNS-LI-004 |  | Supply and installation of irrigation piping and fittings for Landscape | 6d | 2027-07-24 | 2027-07-31 | MOD-LNS-LI-003 |  |  |  |  | -143.3d | 0d | Contract Price Original Scope [657279]; Laborer [54.55 h]; Plumber [109.09 h] | 657,279.43 |  | LS |
| MOD-LNS-LI-005 |  | Valve box installation and controller placement for Landscape | 14d | 2027-07-31 | 2027-08-16 | MOD-LNS-LI-004 |  |  |  |  | -143.3d | 0d | Contract Price Original Scope [164320]; Electrician [1198.5 h]; Plumber [2396.99 h] | 164,319.86 |  | LS |
| MOD-LNS-LI-006 |  | Connection to water source and pump system (if applicable) for Landscape | 20d | 2027-08-16 | 2027-09-08 | MOD-LNS-LI-005 |  |  |  |  | -143.3d | 0d | Contract Price Original Scope [246480]; Technician [200 h]; Plumber [400 h] | 246,479.79 |  | LS |
| MOD-LNS-LI-007 |  | Testing of the irrigation network for leaks and performance for Landscape | 3d | 2027-09-08 | 2027-09-12 | MOD-LNS-LI-006 |  |  |  |  | -143.3d | 0d | Contract Price Original Scope [41080]; Technician [60 h]; Plumber [30 h] | 41,079.96 |  | LS |
| MOD-LNS-LI-008 |  | Backfilling and surface reinstatement for Landscape | 17d | 2027-09-12 | 2027-10-03 | MOD-LNS-LI-007, MOD-GEI-PL-001 |  |  |  |  | -143.3d | 0d | Contract Price Original Scope [205400]; Compactor Operator [279.65 h]; Laborer [559.3 h] | 205,399.82 |  | LS |
| MOD-LNS-LI-009 |  | Commissioning and operational approval for Landscape | 6d | 2027-10-03 | 2027-10-10 | MOD-LNS-LI-008 |  |  |  |  | -143.3d | 0d | Contract Price Original Scope [82159.9]; Technician [10 h]; Plumber [10 h] | 82,159.93 |  | LS |
|  | 9 | **Testing & Commissioning & Closeout** |  | 2026-01-14 | 2027-11-03 |  |  |  |  |  |  |  |  |  |  |  |
|  | 1 | **Testing & Commissioning** |  | 2026-01-14 | 2027-06-20 |  |  |  |  |  |  |  |  |  |  |  |
|  | 1 | **Zone 3** |  | 2026-01-20 | 2027-06-20 |  |  |  |  |  |  |  |  |  |  |  |
| A103610 |  | Testing and Commissioning for Irrigation Network Zone 3 | 21d | 2026-01-20 A | 2027-01-09 | MOD-IRN-EB-120, MOD-IRN-EB-130, MOD-IRN-EB-140, MOD-IRN-EB-150, MOD-IRN-EB-180, MOD-IRN-EB-190, MOD-IRN-VA-55, MOD-IRN-VA-65, MOD-IRN-VA-75, MOD-IRN-VA-85, MOD-IRN-VA-95, MOD-IRN-VR-107, MOD-IRN-VR-117, MOD-IRN-VR-127, MOD-IRN-VR-137, MOD-IRN-VR-77, MOD-IRN-VR-87, MOD-IRN-VR-97, MOD-IRN-WC-106, MOD-IRN-WC-116, MOD-IRN-WC-66, MOD-IRN-WC-76, MOD-IRN-WC-86, MOD-IRN-WC-96, MOD-IRN-AC-55, MOD-IRN-AC-65, MOD-IRN-AC-75, MOD-IRN-AC-85, MOD-IRN-AC-95, MOD-IRN-FC-106, MOD-IRN-FC-116 FS+20d, MOD-IRN-FC-66, MOD-IRN-FC-76, MOD-IRN-FC-86, MOD-IRN-FC-96 | 88% | 2.52d | 2026-10-04 | 2026-10-27 | 50.23d | 119.58d | Contract Price Original Scope [297889] | 297,889.13 | 262,142.44 |  |
| A103590 |  | Testing and Commissioning for Rain Water Drainage Network Zone 3 | 21d | 2026-01-29 A | 2027-01-04 | MOD-RWN-PL-233, MOD-RWN-PL-243, MOD-RWN-PL-253, MOD-RWN-PL-263, MOD-RWN-PL-283, MOD-RWN-PL-293, MOD-RWN-PL-313, MOD-RWN-PL-323, MOD-RWN-PL-333, MOD-RWN-PL-343, MOD-RWN-PL-344, MOD-RWN-PL-353, MOD-RWN-PL-373, MOD-RWN-PL-383, MOD-RWN-PL-393, MOD-RWN-PL-403, MOD-RWN-PL-413, MOD-RWN-PL-723, MOD-RWN-PC-234, MOD-RWN-PC-244, MOD-RWN-PC-254, MOD-RWN-PC-264, MOD-RWN-PC-274, MOD-RWN-PC-284, MOD-RWN-PC-294, MOD-RWN-PC-304, MOD-RWN-PC-314, MOD-RWN-PC-444, MOD-RWN-PC-454, MOD-RWN-PC-464, MOD-RWN-PC-324, MOD-RWN-PC-334, MOD-RWN-PC-344, MOD-RWN-PC-354, MOD-RWN-PC-364, MOD-RWN-PC-374, MOD-RWN-PC-384, MOD-RWN-PC-394, MOD-RWN-PC-404, MOD-RWN-PC-414, MOD-RWN-PC-424, MOD-RWN-PC-434, MOD-RWN-MH-234, MOD-RWN-MH-244, MOD-RWN-MH-254, MOD-RWN-MH-264, MOD-RWN-MH-274, MOD-RWN-MH-284, MOD-RWN-MH-294, MOD-RWN-MH-374, MOD-RWN-MH-384, MOD-RWN-MH-394, MOD-RWN-MH-404, MOD-RWN-MH-414, MOD-RWN-MH-424, MOD-RWN-MH-434, MOD-RWN-MH-304, MOD-RWN-MH-314, MOD-RWN-MH-324, MOD-RWN-MH-334, MOD-RWN-MH-344, MOD-RWN-MH-354, MOD-RWN-MH-364, MOD-RWN-CC-168, MOD-RWN-CC-178, MOD-RWN-CC-188, MOD-RWN-CC-198, MOD-RWN-CC-208, MOD-RWN-CC-218, MOD-RWN-CC-228, MOD-RWN-CC-238, MOD-RWN-CC-248, MOD-RWN-CC-258, MOD-RWN-CC-268, MOD-RWN-CC-278, MOD-RWN-CC-288, MOD-RWN-CC-298, MOD-RWN-CC-308, MOD-RWN-GO-101, MOD-RWN-GO-111, MOD-RWN-GO-121, MOD-RWN-GO-131, MOD-RWN-GO-141, MOD-RWN-GO-151, MOD-RWN-GO-161, MOD-RWN-GO-171, MOD-RWN-GO-181, MOD-RWN-BB-112, MOD-RWN-BB-122, MOD-RWN-BB-132, MOD-RWN-BB-142, MOD-RWN-BB-152, MOD-RWN-BB-162, MOD-RWN-BB-172, MOD-RWN-BB-182, MOD-RWN-BB-192, MOD-RWN-BB-202, MOD-RWN-DB-001, MOD-RWN-DB-002, MOD-RWN-DB-003, MOD-RWN-DB-004, MOD-RWN-DB-005, MOD-RWN-DB-006 | 88% | 2.52d | 2026-07-29 | 2026-08-22 | 54.58d | 123.93d | Contract Price Original Scope [1789002] | 1,789,001.67 | 1,574,321.47 |  |
| A103600 |  | Testing and Commissioning for Potable Water Network Zone 3 | 21d | 2026-01-31 A | 2026-12-21 | MOD-PWN-PI-313, MOD-PWN-PI-323, MOD-PWN-PI-333, MOD-PWN-PI-343, MOD-PWN-PI-353, MOD-PWN-PI-363, MOD-PWN-VC-107, MOD-PWN-VC-117, MOD-PWN-VC-127, MOD-PWN-VC-137, MOD-PWN-VC-77, MOD-PWN-VC-87, MOD-PWN-VC-97, MOD-PWN-FM-55, MOD-PWN-FM-65, MOD-PWN-FM-75, MOD-PWN-FM-85, MOD-PWN-FM-95, MOD-PWN-WA-107, MOD-PWN-WA-117, MOD-PWN-WA-127, MOD-PWN-WA-137, MOD-PWN-WA-77, MOD-PWN-WA-87, MOD-PWN-WA-97 | 88% | 2.52d | 2026-09-09 | 2026-10-04 | 66.03d | 135.38d | Contract Price Original Scope [454068] | 454,067.96 | 399,579.8 |  |
| A102060 |  | Testing and Commissioning for Sewerage Network Zone 3 | 21d | 2026-03-05 A | 2027-01-18 | MOD-SWN-PW-265, MOD-SWN-PW-295, MOD-SWN-PW-305, MOD-SWN-PW-315, MOD-SWN-PW-325, MOD-SWN-PW-335, MOD-SWN-PW-275, MOD-SWN-PW-345, MOD-SWN-PW-355, MOD-SWN-PW-365, MOD-SWN-PW-375, MOD-SWN-PW-385, MOD-SWN-PW-285, MOD-SWN-PW-395, MOD-SWN-PW-405, MOD-SWN-PW-415, MOD-SWN-PW-425, MOD-SWN-PW-435, MOD-SWN-FV-55, MOD-SWN-FV-65, MOD-SWN-FV-75, MOD-SWN-FV-85, MOD-SWN-FV-95, MOD-SWN-PW-805, MOD-SWN-PW-815, MOD-SWN-PW-825, MOD-SWN-PW-835, MOD-SWN-VF-84, MOD-SWN-PW-845, MOD-SWN-PW-855, MOD-SWN-PW-865, MOD-SWN-PW-875, MOD-SWN-VF-94, MOD-SWN-PW-885, MOD-SWN-PW-895, MOD-SWN-PW-905, MOD-SWN-PW-915, MOD-SWN-VF-104, MOD-SWN-PW-925, MOD-SWN-PW-935, MOD-SWN-PW-945, MOD-SWN-PW-955, MOD-SWN-VF-114, MOD-SWN-MH-95, MOD-SWN-MH-185, MOD-SWN-PW-1605, MOD-SWN-PW-1615, MOD-SWN-PW-1625, MOD-SWN-PW-1635, MOD-SWN-MH-195, MOD-SWN-PW-1645, MOD-SWN-PW-1655, MOD-SWN-PW-1665, MOD-SWN-PW-1675, MOD-SWN-MH-205, MOD-SWN-PW-1685, MOD-SWN-PW-1695, MOD-SWN-PW-1705, MOD-SWN-PW-1715, MOD-SWN-MH-215, MOD-SWN-PW-1725, MOD-SWN-PW-1735, MOD-SWN-PW-1745, MOD-SWN-PW-1755 | 88% | 2.52d | 2026-09-24 | 2026-10-18 | 42.18d | 111.53d | Contract Price Original Scope [350278] | 350,278.5 | 308,245.08 |  |
| A103620 |  | Testing and Commissioning for Pumping Station Zone 3 | 21d | 2027-05-26 | 2027-06-20 | MOD-PWN-PS-106, MOD-PWN-PS-116, MOD-PWN-PS-66, MOD-PWN-PS-76, MOD-PWN-PS-86, MOD-PWN-PS-96, MOD-PWN-PB-33, MOD-PWN-PB-43, MOD-PWN-PB-53, MOD-PWN-PE-108, MOD-PWN-PE-118, MOD-PWN-PE-128, MOD-PWN-PE-138, MOD-PWN-PE-148, MOD-PWN-PE-158, MOD-PWN-PE-88, MOD-PWN-PE-98, MOD-PWN-SP-22, MOD-PWN-SP-32, MOD-PWN-PG-44, MOD-PWN-PG-54, MOD-PWN-PG-64, MOD-PWN-PG-74, MOD-PWN-CS-33, MOD-PWN-CS-43, MOD-PWN-CS-53, MOD-PWN-WS-11, MOD-PWN-SL-55, MOD-PWN-SL-65, MOD-PWN-SL-75, MOD-PWN-SL-85, MOD-PWN-SL-95, MOD-SWN-PS-1004, MOD-SWN-PS-1014, MOD-SWN-PS-984, MOD-SWN-PS-994, MOD-SWN-PS-644, MOD-SWN-PS-654, MOD-SWN-PS-1124, MOD-SWN-PS-1134, MOD-SWN-PS-1144, MOD-SWN-PS-1154, MOD-SWN-PS-674, MOD-SWN-PS-934, MOD-SWN-PS-944, MOD-SWN-PS-714, MOD-SWN-PS-724, MOD-SWN-PS-734, MOD-SWN-PS-754, MOD-SWN-PS-844, MOD-SWN-PS-854, MOD-SWN-PS-864, MOD-SWN-PS-874, MOD-SWN-PS-884, MOD-SWN-PS-894, MOD-SWN-PS-904, MOD-SWN-PS-954, MOD-SWN-PS-1024, MOD-SWN-PS-1034, MOD-SWN-PS-1044, MOD-SWN-PS-1054, MOD-SWN-PS-1064, MOD-SWN-PS-1074, MOD-SWN-PS-1084, MOD-SWN-PS-1094, MOD-SWN-PS-1104 |  |  |  |  | -69.35d | 0d | Contract Price Original Scope [3017077] | 3,017,076.89 |  |  |
|  | 2 | **Zone 2** |  | 2026-01-14 | 2027-01-18 |  |  |  |  |  |  |  |  |  |  |  |
| A103660 |  | Testing and Commissioning for Potable Water Network Zone 2 | 21d | 2026-01-14 A | 2026-12-30 | MOD-PWN-VC-7, MOD-PWN-VC-17, MOD-PWN-VC-27, MOD-PWN-VC-37, MOD-PWN-VC-47, MOD-PWN-VC-57, MOD-PWN-VC-67, MOD-PWN-FM-5, MOD-PWN-FM-15, MOD-PWN-FM-25, MOD-PWN-FM-35, MOD-PWN-FM-45, MOD-PWN-WA-7, MOD-PWN-WA-17, MOD-PWN-WA-27, MOD-PWN-WA-37, MOD-PWN-WA-47, MOD-PWN-WA-57, MOD-PWN-WA-67, MOD-PWN-PI-143, MOD-PWN-PI-153, MOD-PWN-PI-163, MOD-PWN-PI-173, MOD-PWN-PI-203, MOD-PWN-PI-213 | 70% | 6.3d | 2026-09-12 | 2026-10-06 | 58.05d | 127.4d | Contract Price Original Scope [908136] | 908,135.9 | 635,695.13 |  |
| A103670 |  | Testing and Commissioning for Irrigation Network Zone 2 | 21d | 2026-02-10 A | 2026-12-17 | MOD-IRN-VA-5, MOD-IRN-VA-15, MOD-IRN-VA-25, MOD-IRN-VA-35, MOD-IRN-VA-45, MOD-IRN-VR-7, MOD-IRN-VR-17, MOD-IRN-VR-27, MOD-IRN-VR-37, MOD-IRN-VR-47, MOD-IRN-VR-57, MOD-IRN-VR-67, MOD-IRN-WC-6, MOD-IRN-WC-16, MOD-IRN-WC-26, MOD-IRN-WC-36, MOD-IRN-WC-46, MOD-IRN-WC-56, MOD-IRN-AC-5, MOD-IRN-AC-15, MOD-IRN-AC-25, MOD-IRN-AC-35, MOD-IRN-AC-45, MOD-IRN-FC-6, MOD-IRN-FC-16, MOD-IRN-FC-26, MOD-IRN-FC-36, MOD-IRN-FC-46, MOD-IRN-FC-56, MOD-IRN-EB-330, MOD-IRN-EB-340, MOD-IRN-EB-350, MOD-IRN-EB-360, MOD-IRN-EB-370, MOD-IRN-EB-380 | 70% | 6.3d | 2026-09-01 | 2026-09-26 | 69.15d | 138.5d | Contract Price Original Scope [595778] | 595,778.27 | 417,044.79 |  |
| A103640 |  | Testing and Commissioning for Sewerage Network Zone 2 | 21d | 2026-03-05 A | 2027-01-18 | MOD-SWN-PW-445, MOD-SWN-PW-455, MOD-SWN-PW-465, MOD-SWN-PW-475, MOD-SWN-PW-485, MOD-SWN-PW-495, MOD-SWN-PW-505, MOD-SWN-PW-515, MOD-SWN-PW-525, MOD-SWN-PW-535, MOD-SWN-PW-545, MOD-SWN-PW-555, MOD-SWN-PW-565, MOD-SWN-PW-575, MOD-SWN-PW-585, MOD-SWN-PW-595, MOD-SWN-PW-605, MOD-SWN-PW-615, MOD-SWN-VF-124, MOD-SWN-VF-134, MOD-SWN-VF-144, MOD-SWN-VF-154, MOD-SWN-PW-965, MOD-SWN-PW-975, MOD-SWN-PW-985, MOD-SWN-PW-995, MOD-SWN-PW-1005, MOD-SWN-PW-1015, MOD-SWN-PW-1025, MOD-SWN-PW-1035, MOD-SWN-PW-1045, MOD-SWN-PW-1055, MOD-SWN-PW-1065, MOD-SWN-PW-1075, MOD-SWN-PW-1085, MOD-SWN-PW-1095, MOD-SWN-PW-1105, MOD-SWN-PW-1115, MOD-SWN-MH-145, MOD-SWN-MH-155, MOD-SWN-MH-165, MOD-SWN-MH-175, MOD-SWN-PW-1445, MOD-SWN-PW-1455, MOD-SWN-PW-1465, MOD-SWN-PW-1475, MOD-SWN-PW-1485, MOD-SWN-PW-1495, MOD-SWN-PW-1505, MOD-SWN-PW-1515, MOD-SWN-PW-1525, MOD-SWN-PW-1535, MOD-SWN-PW-1545, MOD-SWN-PW-1555, MOD-SWN-PW-1565, MOD-SWN-PW-1575, MOD-SWN-PW-1585, MOD-SWN-PW-1595, MOD-SWN-FV-5, MOD-SWN-FV-15, MOD-SWN-FV-25, MOD-SWN-FV-35, MOD-SWN-FV-45, MOD-SWN-MH-45 | 70% | 6.3d | 2026-09-22 | 2026-10-17 | 41.8d | 111.15d | Contract Price Original Scope [700557] | 700,557 | 490,389.9 |  |
| A103650 |  | Testing and Commissioning for Rain Water Drainage Network Zone 2 | 21d | 2026-04-11 A | 2026-12-22 | MOD-RWN-PC-24, MOD-RWN-PC-34, MOD-RWN-PC-44, MOD-RWN-PC-54, MOD-RWN-PC-64, MOD-RWN-PC-74, MOD-RWN-PC-84, MOD-RWN-PC-94, MOD-RWN-PC-104, MOD-RWN-PC-114, MOD-RWN-PC-124, MOD-RWN-PC-134, MOD-RWN-PC-144, MOD-RWN-PC-154, MOD-RWN-PC-164, MOD-RWN-PC-174, MOD-RWN-PC-184, MOD-RWN-PC-194, MOD-RWN-PC-204, MOD-RWN-PC-214, MOD-RWN-PC-224, MOD-RWN-MH-24, MOD-RWN-MH-34, MOD-RWN-MH-44, MOD-RWN-MH-54, MOD-RWN-MH-64, MOD-RWN-MH-74, MOD-RWN-MH-84, MOD-RWN-MH-94, MOD-RWN-MH-104, MOD-RWN-MH-114, MOD-RWN-MH-124, MOD-RWN-MH-134, MOD-RWN-MH-144, MOD-RWN-MH-154, MOD-RWN-MH-164, MOD-RWN-MH-174, MOD-RWN-MH-184, MOD-RWN-MH-194, MOD-RWN-MH-204, MOD-RWN-MH-214, MOD-RWN-MH-224, MOD-RWN-CC-18, MOD-RWN-CC-28, MOD-RWN-CC-38, MOD-RWN-CC-48, MOD-RWN-CC-58, MOD-RWN-CC-68, MOD-RWN-CC-78, MOD-RWN-CC-88, MOD-RWN-CC-98, MOD-RWN-CC-108, MOD-RWN-CC-118, MOD-RWN-CC-128, MOD-RWN-CC-138, MOD-RWN-CC-148, MOD-RWN-CC-158, MOD-RWN-GO-11, MOD-RWN-GO-21, MOD-RWN-GO-31, MOD-RWN-GO-41, MOD-RWN-GO-51, MOD-RWN-GO-61, MOD-RWN-GO-71, MOD-RWN-GO-81, MOD-RWN-GO-91, MOD-RWN-BB-12, MOD-RWN-BB-22, MOD-RWN-BB-32, MOD-RWN-BB-42, MOD-RWN-BB-52, MOD-RWN-BB-62, MOD-RWN-BB-72, MOD-RWN-BB-82, MOD-RWN-BB-92, MOD-RWN-BB-102, MOD-RWN-PC-474, MOD-RWN-PC-484, MOD-RWN-PC-494, MOD-RWN-PL-733, MOD-RWN-PL-743, MOD-RWN-PL-753, MOD-RWN-PL-763, MOD-RWN-PL-773, MOD-RWN-PL-783, MOD-RWN-PL-793, MOD-RWN-PL-803, MOD-RWN-PL-813, MOD-RWN-PL-823, MOD-RWN-PL-833, MOD-RWN-PL-843, MOD-RWN-PL-853, MOD-RWN-PL-863, MOD-RWN-PL-873, MOD-RWN-PL-883, MOD-RWN-PL-893, MOD-RWN-PL-903 | 70% | 6.3d | 2026-07-11 | 2026-08-04 | 65.37d | 134.72d | Contract Price Original Scope [3578003] | 3,578,003.32 | 2,504,602.33 |  |
|  | 3 | **Zone 1** |  | 2026-01-18 | 2027-04-29 |  |  |  |  |  |  |  |  |  |  |  |
| A103710 |  | Testing and Commissioning for Potable Water Network Zone 1 | 21d | 2026-01-18 A | 2026-12-29 | MOD-PWN-VC-001, MOD-PWN-VC-002, MOD-PWN-VC-003, MOD-PWN-VC-004, MOD-PWN-VC-005, MOD-PWN-VC-006, MOD-PWN-VC-007, MOD-PWN-FM-001, MOD-PWN-FM-002, MOD-PWN-FM-003, MOD-PWN-FM-004, MOD-PWN-FM-005, MOD-PWN-WA-001, MOD-PWN-WA-002, MOD-PWN-WA-003, MOD-PWN-WA-004, MOD-PWN-WA-005, MOD-PWN-WA-006, MOD-PWN-WA-007, MOD-PWN-PI-373, MOD-PWN-PI-383, MOD-PWN-PI-393, MOD-PWN-PI-403, MOD-PWN-PI-413, MOD-PWN-PI-423 | 80% | 4.2d | 2026-09-15 | 2026-10-10 | 58.65d | 128d | Contract Price Original Scope [908136] | 908,135.9 | 726,508.72 |  |
| A103700 |  | Testing and Commissioning for Rain Water Drainage Network Zone 1 | 21d | 2026-01-19 A | 2026-12-13 | MOD-RWN-PC-002, MOD-RWN-PC-003, MOD-RWN-PC-004, MOD-RWN-PC-005, MOD-RWN-PC-006, MOD-RWN-PC-007, MOD-RWN-PC-008, MOD-RWN-PC-009, MOD-RWN-PC-010, MOD-RWN-PC-012, MOD-RWN-PC-013, MOD-RWN-PC-014, MOD-RWN-PC-015, MOD-RWN-PC-016, MOD-RWN-PC-018, MOD-RWN-PC-019, MOD-RWN-PC-020, MOD-RWN-PC-504, MOD-RWN-PC-514, MOD-RWN-PC-524, MOD-RWN-PL-913, MOD-RWN-PL-923, MOD-RWN-PL-933, MOD-RWN-PL-943, MOD-RWN-PL-953, MOD-RWN-PL-963, MOD-RWN-PL-973, MOD-RWN-PL-983, MOD-RWN-PL-993, MOD-RWN-PL-1003, MOD-RWN-PL-1013, MOD-RWN-PL-1023, MOD-RWN-PL-1033, MOD-RWN-PL-1043, MOD-RWN-PL-1053, MOD-RWN-PL-1063, MOD-RWN-PL-1073, MOD-RWN-PL-1083, MOD-RWN-PC-021, MOD-RWN-PC-022, MOD-RWN-PC-023, MOD-RWN-PC-024, MOD-RWN-MH-002, MOD-RWN-MH-003, MOD-RWN-MH-004, MOD-RWN-MH-005, MOD-RWN-MH-006, MOD-RWN-MH-007, MOD-RWN-MH-008, MOD-RWN-MH-010, MOD-RWN-MH-011, MOD-RWN-MH-012, MOD-RWN-MH-013, MOD-RWN-MH-014, MOD-RWN-MH-015, MOD-RWN-MH-016, MOD-RWN-MH-018, MOD-RWN-MH-019, MOD-RWN-MH-020, MOD-RWN-MH-021, MOD-RWN-MH-022, MOD-RWN-MH-023, MOD-RWN-MH-024, MOD-RWN-CC-002, MOD-RWN-CC-003, MOD-RWN-CC-004, MOD-RWN-CC-005, MOD-RWN-CC-006, MOD-RWN-CC-008, MOD-RWN-CC-009, MOD-RWN-CC-010, MOD-RWN-CC-011, MOD-RWN-CC-012, MOD-RWN-CC-014, MOD-RWN-CC-015, MOD-RWN-CC-016, MOD-RWN-CC-017, MOD-RWN-CC-018, MOD-RWN-GO-002, MOD-RWN-GO-003, MOD-RWN-GO-004, MOD-RWN-GO-005, MOD-RWN-GO-006, MOD-RWN-GO-008, MOD-RWN-GO-009, MOD-RWN-GO-010, MOD-RWN-GO-011, MOD-RWN-BB-002, MOD-RWN-BB-003, MOD-RWN-BB-004, MOD-RWN-BB-005, MOD-RWN-BB-006, MOD-RWN-BB-008, MOD-RWN-BB-009, MOD-RWN-BB-010, MOD-RWN-BB-011, MOD-RWN-BB-012 | 73% | 5.67d | 2026-07-08 | 2026-08-01 | 72.78d | 142.13d | Contract Price Original Scope [3578003] | 3,578,003.32 | 2,611,942.43 |  |
| A103720 |  | Testing and Commissioning for Irrigation Network Zone 1 | 21d | 2026-01-19 A | 2026-12-16 | MOD-IRN-EB-390, MOD-IRN-EB-400, MOD-IRN-EB-410, MOD-IRN-EB-420, MOD-IRN-EB-430, MOD-IRN-EB-440, MOD-IRN-VA-001, MOD-IRN-VA-002, MOD-IRN-VA-003, MOD-IRN-VA-004, MOD-IRN-VA-005, MOD-IRN-VR-001, MOD-IRN-VR-002, MOD-IRN-VR-003, MOD-IRN-VR-004, MOD-IRN-VR-005, MOD-IRN-VR-006, MOD-IRN-VR-007, MOD-IRN-WC-001, MOD-IRN-WC-002, MOD-IRN-WC-003, MOD-IRN-WC-004, MOD-IRN-WC-005, MOD-IRN-WC-006, MOD-IRN-AC-001, MOD-IRN-AC-002, MOD-IRN-AC-003, MOD-IRN-AC-004, MOD-IRN-AC-005, MOD-IRN-FC-001, MOD-IRN-FC-002, MOD-IRN-FC-003, MOD-IRN-FC-004, MOD-IRN-FC-005, MOD-IRN-FC-006 | 70% | 6.3d | 2026-08-29 | 2026-09-21 | 69.65d | 139d | Contract Price Original Scope [595778] | 595,778.27 | 417,044.79 |  |
| A103690 |  | Testing and Commissioning for Sewerage Network Zone 1 | 21d | 2026-02-11 A | 2027-01-24 | MOD-SWN-FV-001, MOD-SWN-FV-002, MOD-SWN-FV-003, MOD-SWN-FV-004, MOD-SWN-FV-005, MOD-SWN-MH-005, MOD-SWN-PW-625, MOD-SWN-PW-635, MOD-SWN-PW-645, MOD-SWN-PW-655, MOD-SWN-PW-665, MOD-SWN-PW-675, MOD-SWN-PW-685, MOD-SWN-PW-695, MOD-SWN-PW-705, MOD-SWN-PW-715, MOD-SWN-PW-725, MOD-SWN-PW-735, MOD-SWN-PW-745, MOD-SWN-PW-755, MOD-SWN-PW-765, MOD-SWN-PW-775, MOD-SWN-PW-785, MOD-SWN-PW-795, MOD-SWN-VF-164, MOD-SWN-VF-174, MOD-SWN-VF-184, MOD-SWN-VF-194, MOD-SWN-PW-1125, MOD-SWN-PW-1135, MOD-SWN-PW-1145, MOD-SWN-PW-1155, MOD-SWN-PW-1165, MOD-SWN-PW-1175, MOD-SWN-PW-1185, MOD-SWN-PW-1195, MOD-SWN-PW-1205, MOD-SWN-PW-1215, MOD-SWN-PW-1225, MOD-SWN-PW-1235, MOD-SWN-PW-1245, MOD-SWN-PW-1255, MOD-SWN-PW-1265, MOD-SWN-PW-1275, MOD-SWN-MH-105, MOD-SWN-MH-115, MOD-SWN-MH-125, MOD-SWN-MH-135, MOD-SWN-PW-1285, MOD-SWN-PW-1295, MOD-SWN-PW-1305, MOD-SWN-PW-1315, MOD-SWN-PW-1325, MOD-SWN-PW-1335, MOD-SWN-PW-1345, MOD-SWN-PW-1355, MOD-SWN-PW-1365, MOD-SWN-PW-1375, MOD-SWN-PW-1385, MOD-SWN-PW-1395, MOD-SWN-PW-1405, MOD-SWN-PW-1415, MOD-SWN-PW-1425, MOD-SWN-PW-1435 | 70% | 6.3d | 2026-09-22 | 2026-10-17 | 36.85d | 106.2d | Contract Price Original Scope [700557] | 700,557 | 490,389.9 |  |
| A103730 |  | Testing and Commissioning for Pumping Station Zone 1 | 10d | 2027-04-18 | 2027-04-29 | MOD-SWN-PS-002, MOD-SWN-PS-003, MOD-SWN-PS-004, MOD-SWN-PS-0081, MOD-SWN-PS-010, MOD-SWN-PS-012, MOD-SWN-PS-013, MOD-SWN-PS-014, MOD-SWN-PS-019, MOD-SWN-PS-022, MOD-SWN-PS-023, MOD-SWN-PS-024, MOD-SWN-PS-025, MOD-SWN-PS-026, MOD-SWN-PS-027, MOD-SWN-PS-028, MOD-SWN-PS-029, MOD-SWN-PS-038, MOD-SWN-PS-039, MOD-SWN-PS-043, MOD-SWN-PS-045, MOD-SWN-PS-046, MOD-SWN-PS-049, MOD-SWN-PS-050, MOD-SWN-PS-052, MOD-SWN-PS-054, MOD-SWN-PS-055, MOD-SWN-PS-056, MOD-SWN-PS-058, MOD-SWN-PS-059, MOD-SWN-PS-061, MOD-SWN-PS-062, MOD-SWN-PS-064, MOD-PWN-PS-66, MOD-PWN-PS-76, MOD-PWN-PS-86, MOD-PWN-PS-96, MOD-PWN-PS-106, MOD-PWN-PS-116, MOD-PWN-PB-33, MOD-PWN-PB-43, MOD-PWN-PB-53, MOD-PWN-PE-88, MOD-PWN-PE-98, MOD-PWN-PE-108, MOD-PWN-PE-118, MOD-PWN-PE-128, MOD-PWN-PE-138, MOD-PWN-PE-148, MOD-PWN-PE-158, MOD-PWN-SP-22, MOD-PWN-SP-32, MOD-PWN-PG-44, MOD-PWN-PG-54, MOD-PWN-PG-64, MOD-PWN-PG-74, MOD-PWN-CS-33, MOD-PWN-CS-43, MOD-PWN-CS-53, MOD-PWN-WS-11, MOD-PWN-SL-55, MOD-PWN-SL-65, MOD-PWN-SL-75, MOD-PWN-SL-85, MOD-PWN-SL-95, MOD-SWN-PS-1164, MOD-SWN-PS-1174, MOD-SWN-PS-0082 |  |  |  |  | -29.21d | 40.14d | Contract Price Original Scope [3017077] | 3,017,076.89 |  |  |

| ID | WBS | Activity | Duration | Start | Finish | Predecessors | Complete | Remaining | Planned start | Planned finish | Total float | Free float | Resources | Cost | Actual cost |
| --- | --- | --- | --- | --- | --- | --- | --- | --- | --- | --- | --- | --- | --- | --- | --- |
|  | 4 | **General** |  | 2026-06-14 | 2027-05-01 |  |  |  |  |  |  |  |  |  |  |
| A103630 |  | Testing and Commissioning for Communication | 21d | 2026-06-14 A | 2027-05-01 | MOD-COC-DW-002, MOD-COC-DW-003, MOD-COC-DW-004, MOD-COC-DW-005, MOD-COC-DW-007, MOD-COC-DW-008, MOD-COC-DW-009, MOD-COC-MH-004 FF+0.8d | 70% | 6.3d | 2026-12-14 | 2027-01-07 | 11.55d | 59.9d | Contract Price Original Scope [2887268] | 2,887,267.66 | 2,021,087.36 |
|  | 2 | **As-Built** |  | 2027-01-16 | 2027-11-03 |  |  |  |  |  |  |  |  |  |  |
| HO-13 |  | Earthworks as-built Submittals & Approval | 21d | 2027-01-16 | 2027-02-10 | MOD-RCP-GS-001, MOD-RCP-GS-002, MOD-RCP-GS-0031, MOD-RCP-GS-0032, MOD-RCP-GS-0033, MOD-RCP-GS-0041, MOD-RCP-GS-0042, MOD-RCP-GS-0043, MOD-RCP-GS-43, MOD-RCP-GS-53, MOD-RCP-GS-83, MOD-RCP-GS-93, MOD-RCP-GS-123, MOD-RCP-GS-133, MOD-RCP-GS-183, MOD-RCP-GS-193, MOD-RCP-CL-007 |  |  |  |  | 65.4d | 208.7d |  |  |  |
| HO-23 |  | Roadworks as-built Submittals & Approval | 21d | 2027-06-10 | 2027-07-04 | MOD-LOR-BC-002, MOD-LOR-BC-003, MOD-LOR-BC-005, MOD-LOR-BC-007, MOD-LOR-BC-008, MOD-LOR-PC-001, MOD-LOR-PC-002, MOD-LOR-PC-003, MOD-LOR-PC-004, MOD-LOR-PC-005, MOD-ARR-EW-001, MOD-ARR-EW-002, MOD-ARR-PC-001, MOD-ARR-PC-002, MOD-ARR-PC-003, MOD-ARR-PC-004, MOD-ARR-PC-005, MOD-ARR-PC-006 |  |  |  |  | -40d | 103.3d |  |  |  |
| HO-0001 |  | Mechanical as-built Submittals & Approval | 21d | 2027-06-20 | 2027-07-14 | A102060, A103590, A103600, A103610, A103620, A103640, A103650, A103660, A103670, A103690, A103700, A103710, A103720, A103730 |  |  |  |  | -69.35d | 0d |  |  |  |
| HO-3 |  | Electrical as-built Submittals & Approval | 21d | 2027-06-20 | 2027-07-14 | A103630 FF, A103620, A103640, A103650, A103660, A103670, A103690, A103700, A103710, A103720, A103730 |  |  |  |  | -48.35d | 21d |  |  |  |
| HO-33 |  | Landscape as-built Submittals & Approval | 21d | 2027-10-10 | 2027-11-03 | MOD-LNS-PT-002, MOD-LNS-PT-003, MOD-LNS-PT-004, MOD-LNS-PT-005, MOD-LNS-PT-006, MOD-LNS-PT-007, MOD-LNS-PT-008, MOD-LNS-PT-009, MOD-LNS-PT-010, MOD-LNS-GL-002, MOD-LNS-GL-003, MOD-LNS-GL-004, MOD-LNS-GL-005, MOD-LNS-GL-006, MOD-LNS-GL-007, MOD-LNS-GL-008, MOD-LNS-LI-002, MOD-LNS-LI-003, MOD-LNS-LI-004, MOD-LNS-LI-005, MOD-LNS-LI-006, MOD-LNS-LI-007, MOD-LNS-LI-008, MOD-LNS-LI-009 |  |  |  |  | -143.3d | 0d |  |  |  |
|  | 3 | **Handover** |  | 2027-07-14 | 2027-08-08 |  |  |  |  |  |  |  |  |  |  |
| HO-0003 |  | Handover & Demobilization | 21d | 2027-07-14 | 2027-08-08 | HO-0001, HO-3 FF |  |  |  |  | -69.35d | 73.95d |  |  |  |

## Activity codes

| Code | Value | Meaning |
| --- | --- | --- |
| MOD-2937 | CM | Communication |
| MOD-2937 | ENGG | Engineering |
| MOD-2937 | IR | Irrigation Network |
| MOD-2937 | LS | Landscape |
| MOD-2937 | PO | Rain Water Collection Ponds |
| MOD-2937 | PROC | Procurement |
| MOD-2937 | PS | Sewerage Pumping Station |
| MOD-2937 | PW | Potable Water Network |
| MOD-2937 | RD | Roads |
| MOD-2937 | RW | Rain Water Drainage Network |
| MOD-2937 | SW | Sewerage Network |
