# Modon Revised - Update 9-11-26

Schedule from Primavera P6, 2025-05-19 to 2027-05-18, data date 2026-11-09, costs in SAR, A marks actual dates.
Must finish by 2027-05-18

## Calendars

- AJH - 6day * 10 hours (With Holidays): Mon-Wed 08:00-18:00; Thu 07:00-17:00; Fri off; Sat-Sun 08:00-18:00. Exceptions (off unless hours are given): 2025-06-05, 2025-06-07 to 2025-06-09, 2025-09-22, 2026-09-23, 2027-02-21, 2027-02-22 10:00-16:00, 2027-02-23 10:00-14:00, 2027-02-24 10:00-16:00, 2027-02-25 11:00-15:00, 2027-02-27 to 2027-03-03 10:00-16:00, 2027-03-04 10:00-15:00, 2027-03-06 to 2027-03-10 10:00-16:00, 2027-03-11 10:00-15:00, 2027-03-13 to 2027-03-18 10:00-16:00, 2027-03-20 to 2027-03-22, 2027-05-18 08:00-16:00.
- UADC02: Mon-Thu 07:00-17:00; Fri off; Sat-Sun 07:00-17:00. Exceptions (off unless hours are given): 2025-06-05, 2025-06-07 to 2025-06-08, 2025-09-23.

## Resources

| Resource | Group | Unit | Rate | Notes |
| --- | --- | --- | --- | --- |
| Labour | labor |  |  |  |
| Fire Hydrant | material |  |  |  |
| Contract Price Original Scope | material | SAR | 1 | ï»¿ |
| Pump Operator | equipment |  |  |  |
| Equipment Operator | equipment |  |  |  |
| Excavator Operator | equipment |  |  |  |
| Compactor Operator | equipment |  |  |  |
| Dump Truck Operator | equipment |  |  |  |
| Water Truck Operator | equipment |  |  |  |
| Crane Operator | equipment |  |  |  |
| Boom Truck Operator | equipment |  |  |  |
| Telecom Manhole | material |  |  |  |
| Telecom Pipe | material |  |  |  |
| Telecom Duct (Road Crossing) | material |  |  |  |
| Road Crossing Sleeves 300 mm | material |  |  |  |
| Road Crossing Sleeves 400 mm | material |  |  |  |
| HDPE Pipes 630 MM | material |  |  |  |
| Isolation Chambers | material |  |  |  |
| Air Valve Chambers | material |  |  |  |
| Washout Chambers | material |  |  |  |
| FlowMeter Chambers | material |  |  |  |
| Buried Valves | material |  |  |  |
| Washout / Air / FlowMeter Valves | material |  |  |  |
| Butterfly Valves | material |  |  |  |
| Fittings - Tees (all sizes) | material |  |  |  |
| Fittings - End Caps (all sizes) | material |  |  |  |
| Thrust Blocks | material |  |  |  |
| Bedding | material |  |  |  |
| Local Road - Curbstone | material |  |  |  |
| Gullies & Catchbasin Pipes (300 mm) | material |  |  |  |
| Gullies & Catchbasin Pipes - Bedding | material |  |  |  |
| Gravel and Geotextile | material |  |  |  |
| Inspection Chamber | material |  |  |  |
| Fittings - Elbows (all sizes) | material |  |  |  |
| Fittings - Tees (all sizes) | material |  |  |  |
| Fittings - End Caps (all sizes) | material |  |  |  |
| Buried Valves | material |  |  |  |
| Butterfly Valves | material |  |  |  |
| Washout / Air / other Valves | material |  |  |  |
| Isolation Valve Chambers | material |  |  |  |
| Washout Valve Chambers | material |  |  |  |
| Air Valve Chambers | material |  |  |  |
| Pump Room & Tank - Fire Fighting & Water Pumps | material |  |  |  |
| Pump Room & Tank - Surge Vessel | material |  |  |  |
| Pump Room & Tank - Pump Building + Flow meter chamber | material |  |  |  |
| Pump Room & Tank - Water Tank (remaining work) | material |  |  |  |
| Pump Room & Tank - Generators | material |  |  |  |
| Pump Room & Tank - Chlorination System | material |  |  |  |
| Pump Room & Tank - Street Lighting | material |  |  |  |
| Potable Pipes 355 MM | material |  |  |  |
| Potable Pipes 200 MM | material |  |  |  |
| Perforated 200 mm | material |  |  |  |
| Collection Pipes 150 MM | material |  |  |  |
| Soakaway | material |  |  |  |
| Gully outfalls | material |  |  |  |
| Catch Basins | material |  |  |  |
| Fittings - Elbows (all sizes) | material |  |  |  |
| Fittings - Reducers (Connectors) (all sizes) | material |  |  |  |
| HDPE Pipes 250 MM | material |  |  |  |
| HDPE Pipes 280 MM | material |  |  |  |
| HDPE Pipes 315 MM | material |  |  |  |
| Main Road - Curbstone | material |  |  |  |
| HDPE Pipes 125 MM | material |  |  |  |
| Perforated 160 mm | material |  |  |  |
| Grader Operator | equipment |  |  |  |
| Paver Operator | equipment |  |  |  |
| Dozer Operator | equipment |  |  |  |
| Local Road - MC1 | material |  |  |  |
| Local Road - Binder Course | material |  |  |  |
| Local Road - Wearing Course | material |  |  |  |
| UPVC Pipes 150 MM | material |  |  |  |
| UPVC Pipes 200 MM | material |  |  |  |
| Ponds - Clearnce | material |  |  |  |
| Ponds - Excavation | material |  |  |  |
| Ponds - Disposal Material | material |  |  |  |
| Ponds - Filter | material |  |  |  |
| Ponds - HDPE geomembrane waterproofing | material |  |  |  |
| Ponds - Siphon pipework | material |  |  |  |
| Ponds - blinding & Walls Concerete | material |  |  |  |
| Ponds - RAFT Concerete | material |  |  |  |
| Ponds - Backfilling | material |  |  |  |
| Ponds - Perimeter waterproof | material |  |  |  |
| Ponds - Entrance Rood | material |  |  |  |
| Ponds - Riprap | material |  |  |  |
| Box Culvert (all sizes/depths) | material |  |  |  |
| Storm Pipes 700 MM | material |  |  |  |
| Storm Pipes 700 MM - Bedding | material |  |  |  |
| Landscape - Phoenix Dactylifera(PD) | material |  |  |  |
| Landscape - Atriplex canescens | material |  |  |  |
| Landscape - Peltophorum Inerme | material |  |  |  |
| Landscape - A 50 mm thick layer of gravel for green areas | material |  |  |  |
| Landscape - Gravel bed with a thickness of 150 mm for the drainage netwo | material |  |  |  |
| Landscape - Cultivation soil | material |  |  |  |
| Landscape - Secondary Irrigation Network | material |  |  |  |
| Landscape - Integrated maintenance and preservation in all aspects | material |  |  |  |
| Pre Test QTY | material |  |  |  |
| Washout Valves | material |  |  |  |
| Air Release Valves | material |  |  |  |
| Isolation Valves | material |  |  |  |
| Washout / Drain Chambers | material |  |  |  |
| Air Release Chambers | material |  |  |  |
| Isolation Valve Chambers | material |  |  |  |
| Road Crossing Sleeves 800 mm | material |  |  |  |
| Road Crossing Sleeves 600 mm | material |  |  |  |
| HDPE Pipes 160 MM | material |  |  |  |
| HDPE Pipes 280 MM | material |  |  |  |
| HDPE Pipes 500 MM | material |  |  |  |
| GRP Pipes 500 MM | material |  |  |  |
| Manholes (all depths, GRP) | material |  |  |  |
| Pump Station PS01 - Pumps | material |  |  |  |
| Pump Station PS01 - Control System | material |  |  |  |
| Pump Station PS01 - In-line Booste Station | material |  |  |  |
| Pump Station PS01 - Raked bar SS 316 (35 mm) | material |  |  |  |
| Pump Station PS01 - Tank | material |  |  |  |
| Pump Station PS01 - Concrete Element Works | material |  |  |  |
| Pump Station PS01 - MCC | material |  |  |  |
| Pump Station PS01 - Light Works | material |  |  |  |
| Pump Station PS01 - UPVC Ducts | material |  |  |  |
| Pump Station PS01 - Earthing | material |  |  |  |
| Pump Station PS01 - Interlock Paving | material |  |  |  |
| Pump Station PS02 - Pumps | material |  |  |  |
| Pump Station PS02 - Control System | material |  |  |  |
| Pump Station PS02 - In-line Booste Station | material |  |  |  |
| Pump Station PS02 - Valves | material |  |  |  |
| Pump Station PS02 - Fence and Gates | material |  |  |  |
| Pump Station PS02 - Concrete Element Works | material |  |  |  |
| Pump Station PS02 - MCC | material |  |  |  |
| Pump Station PS02 - Light Works | material |  |  |  |
| Pump Station PS02 - UPVC Ducts | material |  |  |  |
| Pump Station PS02 - Earthing | material |  |  |  |
| Pump Station PS02 - Interlock Paving | material |  |  |  |
| Pump Station PS03 - Pumps | material |  |  |  |
| Pump Station PS03 - Control System | material |  |  |  |
| Pump Station PS03 - In-line Booste Station | material |  |  |  |
| Pump Station PS03 - Valves | material |  |  |  |
| Pump Station PS03 - Fence and Gates | material |  |  |  |
| Pump Station PS03 - Concrete Element Works | material |  |  |  |
| Pump Station PS03 - MCC | material |  |  |  |
| Pump Station PS03 - Light Works | material |  |  |  |
| Pump Station PS03 - UPVC Ducts | material |  |  |  |
| Pump Station PS03 - Earthing | material |  |  |  |
| Pump Station PS03 - Interlock Paving | material |  |  |  |
| Pump Station PS04 - Pumps | material |  |  |  |
| Pump Station PS04 - Control System | material |  |  |  |
| Pump Station PS04 - In-line Booste Station | material |  |  |  |
| Pump Station PS04 - Valves | material |  |  |  |
| Pump Station PS04 - Raked bar SS 316 (35 mm) | material |  |  |  |
| Pump Station PS04 - Concrete Element Works | material |  |  |  |
| Pump Station PS04 - MCC | material |  |  |  |
| Pump Station PS04 - Light Works | material |  |  |  |
| Pump Station PS04 - UPVC Ducts | material |  |  |  |
| Pump Station PS04 - Earthing | material |  |  |  |
| Pump Station PS04 - Interlock Paving | material |  |  |  |
| Pump Station PS04 - Tank | material |  |  |  |
| Pump Station PS04 - Fence and Gates | material |  |  |  |
| Storm Pipes 400 MM | material |  |  |  |
| Storm Pipes 400 MM - Bedding | material |  |  |  |
| Storm Pipes 500 MM | material |  |  |  |
| Storm Pipes 500 MM - Bedding | material |  |  |  |
| Manholes GRP (new + DI cover only) | material |  |  |  |
| Collection Chamber | material |  |  |  |
| Potable Pipes 250 MM | material |  |  |  |
| Potable Pipes 560 MM | material |  |  |  |
| Fittings - Reducers (all sizes) | material |  |  |  |
| Thrust Blocks | material |  |  |  |
| Sand Bedding | material |  |  |  |
| UPVC Pipes 250 MM | material |  |  |  |
| Potable Pipes 225 MM | material |  |  |  |
| Pump Station PS01 - Fence and Gates | material |  |  |  |
| Flow Meter Chambers | material |  |  |  |
| Ponds - Vertical Concrete (G143) | material |  |  |  |
| Ponds - Reinforcement Steel 12 mm (G524) | material |  |  |  |
| Concrete Manholes on Box Culvert - Manhole with a depth of 1.5-2.0 m | material |  |  |  |
| Concrete Manholes on Box Culvert - Manhole with a depth of 3.0-3.5 m | material |  |  |  |
| Concrete Manholes on Box Culvert - Manhole with a depth of 2.5-3.0 m | material |  |  |  |
| Concrete Manholes on Box Culvert - Manhole with a depth of 0.0-1.5 m | material |  |  |  |
| Concrete Manholes on Box Culvert - Manhole with a depth of 0.0-1.5 m | material |  |  |  |
| Concrete Manholes on Box Culvert - Manhole with a depth of 1.5-2.0 m | material |  |  |  |
| Concrete Manholes on Box Culvert - Manhole with a depth of 2.0-2.5 m | material |  |  |  |
| Concrete Manholes on Box Culvert - Manhole with a depth of more than -4.0 m | material |  |  |  |
| Concrete Manholes on Box Culvert - Manhole with a depth of 2.0-2.5 m | material |  |  |  |
| Landscape - Semi-porous membrane | material |  |  |  |
| Landscape - Atriplex canescens 2Lt pot, 30-40cm height | material |  |  |  |
| Landscape - Phoenix Dactylifera(PD) (300-350 cm height) | material |  |  |  |

## Schedule

| ID | WBS | Activity | Type | Duration | Start | Finish | Predecessors | Complete | Planned start | Planned finish | Total float | Free float | Constraint | Resources | MODON |
| --- | --- | --- | --- | --- | --- | --- | --- | --- | --- | --- | --- | --- | --- | --- | --- |
|  | 7 | **Part 02** |  |  | 2025-05-19 | 2027-05-18 |  |  |  |  |  |  |  |  |  |
|  | 1 | **Milestones** |  |  | 2026-09-13 | 2027-05-18 |  |  |  |  |  |  |  |  |  |
| Milestone.1 |  | Project Start | milestone | 0d | 2026-09-13 A | 2026-09-13 A |  | 100% | 2026-09-14 | 2026-09-14 |  |  | start on 2025-05-19 |  | MS |
| Milestone.2 |  | Revised Scope Finish date | milestone | 0d | 2027-04-03 | 2027-04-03 | Milestone.6, Milestone.11, Milestone.7, Milestone.8, Milestone.12, Milestone.13, Milestone.10, Milestone.14, Milestone.15 |  |  |  | 39.4d | 39.2d |  |  | MS |
| Milestone.3 |  | T&C Finish Date | milestone | 0d | 2027-05-02 | 2027-05-02 | T&C.1, T&C.2, T&C.3, T&C.4 |  |  |  | 14.4d | 14.2d |  |  | MS |
| Milestone.4 |  | Saving Scope Finish date | milestone | 0d | 2027-05-18 | 2027-05-18 | Saving Works.1, Saving Works.2, Saving Works.3, Saving Works.4, Saving Works.5, Saving Works.8, Saving Works.6, Saving Works.7 |  |  |  | 0.2d | 0d |  |  | MS |
| Milestone.5 |  | Project Finish | milestone | 0d | 2027-05-18 | 2027-05-18 | Milestone.2, Milestone.4, Milestone.3 |  |  |  | 0.2d | 0d |  |  | MS |
|  | 4 | **Intermediate Milestones** |  |  | 2027-01-04 | 2027-04-03 |  |  |  |  |  |  |  |  |  |
| Milestone.6 |  | Main Roads Finish Date | milestone | 0d | 2027-01-04 | 2027-01-04 | RSZone 2Road 01Main RoadA71940, RSZone 1Road 02Main RoadA86130, RSZone 1Road 09Main RoadA32680, RSZone 3Road 04Main RoadA93930 |  |  |  | 101.72d | 62.32d |  |  | MS |
| Milestone.15 |  | Secondary Irrigation Network Finish Date | milestone | 0d | 2027-02-04 | 2027-02-04 | RSZone 1LandscapeA95850 |  |  |  | 74.4d | 35d |  |  | MS |
| Milestone.13 |  | Ponds Finish Date | milestone | 0d | 2027-02-17 | 2027-02-17 | RSZone 3Road 10PondsA87490 |  |  |  | 0.21d | 0d |  |  | MS |
| Milestone.7 |  | Local Roads Finish Date | milestone | 0d | 2027-03-03 | 2027-03-03 | RSZone 3Road 04Local RoadA81050 |  |  |  | 0.4d | 0d |  |  | MS |
| Milestone.10 |  | Irrigation Network Finish Date | milestone | 0d | 2027-03-17 | 2027-03-17 | RSZone 1Road 02Irrigation NetworkA85940-, RSZone 1Road 02Irrigation NetworkA89080, RSZone 1Road 02Irrigation NetworkA89090-, RSZone 1Road 02Irrigation NetworkA85990-, RSZone 1Road 02Irrigation NetworkA86000, RSZone 1Road 02Irrigation NetworkA30500, RSZone 1Road 02Irrigation NetworkA30590, RSZone 1Road 02Irrigation NetworkA30780, RSZone 1Road 02Irrigation NetworkA30860, RSZone 1Road 02Irrigation NetworkA30940, RSZone 1Road 02Irrigation NetworkA31020, RSZone 1Road 02Irrigation NetworkA31040-, RSZone 1Road 09Irrigation NetworkA32560, RSZone 1Road 09Irrigation NetworkA31620, RSZone 1Road 09Irrigation NetworkA89120, RSZone 1Road 09Irrigation NetworkA31860, RSZone 1Road 09Irrigation NetworkA32000, RSZone 1Road 09Irrigation NetworkA32140, RSZone 1Road 24Irrigation NetworkA89780-, RSZone 1Road 24Irrigation NetworkA89420, RSZone 1Road 24Irrigation NetworkA94620, RSZone 1Road 24Irrigation NetworkA89270, RSZone 1Road 09Irrigation NetworkA32400-, RSZone 1Road 09Irrigation NetworkA32380, RSZone 1Road 09Irrigation NetworkA32300, RSZone 1Road 09Irrigation NetworkA32220, RSZone 1Road 25Irrigation NetworkA22020, RSZone 1Road 25Irrigation NetworkA86150, RSZone 1Road 25Irrigation NetworkA22510, RSZone 1Road 25Irrigation NetworkA22600, RSZone 1Road 25Irrigation NetworkA22650, RSZone 1Road 25Irrigation NetworkA90070, RSZone 1Road 25Irrigation NetworkA22700, RSZone 1Road 25Irrigation NetworkA22870, RSZone 1Road 25Irrigation NetworkA22790, RSZone 1Road 25Irrigation NetworkA22950, RSZone 1Road 25Irrigation NetworkA23030, RSZone 1Road 26Irrigation NetworkA94740, RSZone 1Road 26Irrigation NetworkA90120-, RSZone 1Road 26Irrigation NetworkA90170-, RSZone 1Road 27Irrigation NetworkA94860, RSZone 1Road 28Irrigation NetworkA23420, RSZone 1Road 28Irrigation NetworkA23870, RSZone 1Road 29Irrigation NetworkA25230, RSZone 1Road 30Irrigation NetworkA86160-, RSZone 1Road 30Irrigation NetworkA26590, RSZone 1Road 30Irrigation NetworkA27130-, RSZone 1Road 31Irrigation NetworkA94910, RSZone 1Road 31Irrigation NetworkA90250, RSZone 1Road 32Irrigation NetworkA27620, RSZone 1Road 32Irrigation NetworkA27900-, RSZone 1Road 32Irrigation NetworkA27950, RSZone 2Road 01Irrigation NetworkA69260, RSZone 2Road 01Irrigation NetworkA90300, RSZone 2Road 01Irrigation NetworkA69620, RSZone 2Road 01Irrigation NetworkA90340, RSZone 2Road 01Irrigation NetworkA69980, RSZone 2Road 01Irrigation NetworkA70060, RSZone 2Road 01Irrigation NetworkA70140, RSZone 2Road 01Irrigation NetworkA70160-, RSZone 2Road 08Irrigation NetworkA90760, RSZone 2Road 08Irrigation NetworkA95030, RSZone 2Road 08Irrigation NetworkA90790, RSZone 2Road 08Irrigation NetworkA90830, RSZone 2Road 08Irrigation NetworkA90910, RSZone 2Road 08Irrigation NetworkA90990, RSZone 2Road 08Irrigation NetworkA91170-, RSZone 2Road 11Irrigation NetworkA91810, RSZone 2Road 11Irrigation NetworkA92290, RSZone 2Road 11Irrigation NetworkA91710-, RSZone 2Road 11Irrigation NetworkA92340, RSZone 2Road 11Irrigation NetworkA95080, RSZone 2Road 11Irrigation NetworkA92250-, RSZone 2Road 12Irrigation NetworkA69020, RSZone 2Road 12Irrigation NetworkA70210, RSZone 2Road 13Irrigation NetworkA69140, RSZone 2Road 13Irrigation NetworkA69410-, RSZone 2Road 13Irrigation NetworkA70800, RSZone 2Road 13Irrigation NetworkA71340-, RSZone 2Road 14Irrigation NetworkA92850, RSZone 2Road 14Irrigation NetworkA95130, RSZone 2Road 14Irrigation NetworkA93030, RSZone 2Road 15Irrigation NetworkA93120, RSZone 2Road 15Irrigation NetworkA95180, RSZone 2Road 15Irrigation NetworkA93130, RSZone 2Road 16Irrigation NetworkA86240, RSZone 2Road 16Irrigation NetworkA69450-, RSZone 2Road 16Irrigation NetworkA71390, RSZone 2Road 16Irrigation NetworkA71930-, RSZone 2Road 17Irrigation NetworkA95250, RSZone 2Road 18Irrigation NetworkA95300, RSZone 2Road 18Irrigation NetworkA93360, RSZone 2Road 19Irrigation NetworkA95350, RSZone 2Road 20Irrigation NetworkA95400, RSZone 3Road 03Irrigation NetworkA80770, RSZone 3Road 03Irrigation NetworkA79830, RSZone 3Road 03Irrigation NetworkA79220, RSZone 3Road 03Irrigation NetworkA79300, RSZone 3Road 04Irrigation NetworkA93760, RSZone 3Road 04Irrigation NetworkA93800, RSZone 3Road 04Irrigation NetworkA80690, RSZone 3Road 04Irrigation NetworkA79140, RSZone 3Road 04Irrigation NetworkA80530-, RSZone 3Road 04Irrigation NetworkA79880, RSZone 3Road 04Irrigation NetworkA80470, RSZone 3Road 04Irrigation NetworkA93830, RSZone 3Road 04Irrigation NetworkA80370, RSZone 3Road 04Irrigation NetworkA93860, RSZone 3Road 04Irrigation NetworkA93890, RSZone 3Road 04Irrigation NetworkA80270, RSZone 3Road 04Irrigation NetworkA93920, RSZone 3Road 04Irrigation NetworkA79540, RSZone 3Road 04Irrigation NetworkA79620, RSZone 3Road 04Irrigation NetworkA79700, RSZone 3Road 04Irrigation NetworkA79750, RSZone 3Road 04Irrigation NetworkA80780-, RSZone 3Road 05Irrigation NetworkA80790, RSZone 3Road 05Irrigation NetworkA79930, RSZone 3Road 06Irrigation NetworkA79980, RSZone 3Road 07Irrigation NetworkA80030, RSZone 3Road 10Irrigation NetworkA87350, RSZone 3Road 10Irrigation NetworkA87360-, RSZone 3Road 10Irrigation NetworkA80080, RSZone 3Road 10Irrigation NetworkA80420, RSZone 3Road 10Irrigation NetworkA80810-, RSZone 3Road 21Irrigation NetworkA80130, RSZone 3Road 22Irrigation NetworkA80180, RSZone 3Road 23Irrigation NetworkA80230, RSZone 1Road 02Irrigation NetworkA30640, RSZone 2Road 18Irrigation NetworkA93350, RSZone 3Road 04Irrigation NetworkA80820-, Pre Test.2, RSZone 1Road 32Irrigation NetworkA27870-, RSZone 2Road 13Irrigation NetworkA69310-, RSZone 1Road 09Irrigation NetworkA32550 |  |  |  | 0.64d | 0d |  |  | MS |
| Milestone.9 |  | Potable Water Network Finish Date | milestone | 0d | 2027-03-18 | 2027-03-18 | RSZone 3Road 23Potable NetworkA84330, RSZone 1Road 02Potable NetworkA85420, RSZone 1Road 02Potable NetworkA55420, RSZone 1Road 02Potable NetworkA55430, RSZone 1Road 02Potable NetworkA55440, RSZone 1Road 02Potable NetworkA55450, RSZone 1Road 02Potable NetworkA56500, RSZone 1Road 02Potable NetworkA55860, RSZone 1Road 02Potable NetworkA56700, RSZone 1Road 02Potable NetworkA88960, RSZone 1Road 02Potable NetworkA89010, RSZone 1Road 02Potable NetworkA89060, RSZone 1Road 02Potable NetworkA55700, RSZone 1Road 02Potable NetworkA57080, RSZone 1Road 02Potable NetworkA57470, RSZone 1Road 09Potable NetworkA53850, RSZone 1Road 09Potable NetworkA55330, RSZone 1Road 09Potable NetworkA55470, RSZone 1Road 09Potable NetworkA55490, RSZone 1Road 09Potable NetworkA55910, RSZone 1Road 09Potable NetworkA56550, RSZone 1Road 09Potable NetworkA57170, RSZone 1Road 09Potable NetworkA55760, RSZone 1Road 09Potable NetworkA57530, RSZone 1Road 24Potable NetworkA57590, RSZone 1Road 24Potable NetworkA89210, RSZone 1Road 24Potable NetworkA56600, RSZone 1Road 24Potable NetworkA55960, RSZone 1Road 24Potable NetworkA89250, RSZone 1Road 25Potable NetworkA55010, RSZone 1Road 25Potable NetworkA55130, RSZone 1Road 25Potable NetworkA55410, RSZone 1Road 25Potable NetworkA56010, RSZone 1Road 25Potable NetworkA89890, RSZone 1Road 25Potable NetworkA56650, RSZone 1Road 25Potable NetworkA89920, RSZone 1Road 25Potable NetworkA89950, RSZone 1Road 25Potable NetworkA89980, RSZone 1Road 25Potable NetworkA90010, RSZone 1Road 25Potable NetworkA90040, RSZone 1Road 25Potable NetworkA57250, RSZone 1Road 25Potable NetworkA57330, RSZone 1Road 25Potable NetworkA57410, RSZone 1Road 25Potable NetworkA55770, RSZone 1Road 25Potable NetworkA57650, RSZone 1Road 26Potable NetworkA57710, RSZone 1Road 26Potable NetworkA56060, RSZone 1Road 26Potable NetworkA90110, RSZone 1Road 27Potable NetworkA56110, RSZone 1Road 27Potable NetworkA57770, RSZone 1Road 28Potable NetworkA54130, RSZone 1Road 28Potable NetworkA56160, RSZone 1Road 28Potable NetworkA57830, RSZone 1Road 29Potable NetworkA55600, RSZone 1Road 29Potable NetworkA55730, RSZone 1Road 29Potable NetworkA57890, RSZone 1Road 29Potable NetworkA56210, RSZone 1Road 30Potable NetworkA54690, RSZone 1Road 30Potable NetworkA55650, RSZone 1Road 30Potable NetworkA56260, RSZone 1Road 30Potable NetworkA57950, RSZone 1Road 31Potable NetworkA54970, RSZone 1Road 31Potable NetworkA56310, RSZone 1Road 31Potable NetworkA58010, RSZone 1Road 31Potable NetworkA55810, RSZone 1Road 32Potable NetworkA56360, RSZone 1Road 32Potable NetworkA58070, RSZone 2Road 01Potable NetworkA75930, RSZone 2Road 01Potable NetworkA77190, RSZone 2Road 08Potable NetworkA75980, RSZone 2Road 08Potable NetworkA76970, RSZone 2Road 08Potable NetworkA76890, RSZone 2Road 08Potable NetworkA77250, RSZone 2Road 08Potable NetworkA75760, RSZone 2Road 10Potable NetworkA91680, RSZone 2Road 10Potable NetworkA77130, RSZone 2Road 10Potable NetworkA75770, RSZone 2Road 11Potable NetworkA76080, RSZone 2Road 11Potable NetworkA76810, RSZone 2Road 11Potable NetworkA75780, RSZone 2Road 11Potable NetworkA77370, RSZone 2Road 12Potable NetworkA74920, RSZone 2Road 12Potable NetworkA76130, RSZone 2Road 12Potable NetworkA77430, RSZone 2Road 12Potable NetworkA75790, RSZone 2Road 13Potable NetworkA75070, RSZone 2Road 13Potable NetworkA75430, RSZone 2Road 13Potable NetworkA75730, RSZone 2Road 13Potable NetworkA76180, RSZone 2Road 13Potable NetworkA77490, RSZone 2Road 13Potable NetworkA75860, RSZone 2Road 14Potable NetworkA75630, RSZone 2Road 14Potable NetworkA75740, RSZone 2Road 14Potable NetworkA76230, RSZone 2Road 14Potable NetworkA77550, RSZone 2Road 14Potable NetworkA75810, RSZone 2Road 15Potable NetworkA76280, RSZone 2Road 15Potable NetworkA77610, RSZone 2Road 16Potable NetworkA74910, RSZone 2Road 16Potable NetworkA75750, RSZone 2Road 16Potable NetworkA75270, RSZone 2Road 16Potable NetworkA76330, RSZone 2Road 16Potable NetworkA77670, RSZone 2Road 16Potable NetworkA75880, RSZone 2Road 17Potable NetworkA76380, RSZone 2Road 17Potable NetworkA77730, RSZone 2Road 18Potable NetworkA76430, RSZone 2Road 18Potable NetworkA77790, RSZone 2Road 19Potable NetworkA76480, RSZone 2Road 19Potable NetworkA77850, RSZone 2Road 19Potable NetworkA75690, RSZone 2Road 20Potable NetworkA76530, RSZone 2Road 20Potable NetworkA77910, RSZone 3Road 03Potable NetworkA82680, RSZone 3Road 03Potable NetworkA83940, RSZone 3Road 03Potable NetworkA84380, RSZone 3Road 04Potable NetworkA86750, RSZone 3Road 04Potable NetworkA82570, RSZone 3Road 04Potable NetworkA93580, RSZone 3Road 04Potable NetworkA82730, RSZone 3Road 04Potable NetworkA83220, RSZone 3Road 04Potable NetworkA93610, RSZone 3Road 04Potable NetworkA93640, RSZone 3Road 04Potable NetworkA83320, RSZone 3Road 04Potable NetworkA93670, RSZone 3Road 04Potable NetworkA93700, RSZone 3Road 04Potable NetworkA83560, RSZone 3Road 04Potable NetworkA83800, RSZone 3Road 04Potable NetworkA83640, RSZone 3Road 04Potable NetworkA84000, RSZone 3Road 04Potable NetworkA93720, RSZone 3Road 04Potable NetworkA93710, RSZone 3Road 05Potable NetworkA82780, RSZone 3Road 06Potable NetworkA82600, RSZone 3Road 06Potable NetworkA82830, RSZone 3Road 06Potable NetworkA83120, RSZone 3Road 06Potable NetworkA94110, RSZone 3Road 06Potable NetworkA94140, RSZone 3Road 06Potable NetworkA84060, RSZone 3Road 06Potable NetworkA94150, RSZone 3Road 07Potable NetworkA82880, RSZone 3Road 07Potable NetworkA84120, RSZone 3Road 10Potable NetworkA84180, RSZone 3Road 10Potable NetworkA83370, RSZone 3Road 10Potable NetworkA83270, RSZone 3Road 10Potable NetworkA94270, RSZone 3Road 10Potable NetworkA83170, RSZone 3Road 10Potable NetworkA82930, RSZone 3Road 10Potable NetworkA94300, RSZone 3Road 10Potable NetworkA94330, RSZone 3Road 10Potable NetworkA83720, RSZone 3Road 10Potable NetworkA83880, RSZone 3Road 21Potable NetworkA82980, RSZone 3Road 21Potable NetworkA84240, RSZone 3Road 22Potable NetworkA83030, RSZone 3Road 22Potable NetworkA84300, RSZone 3Road 23Potable NetworkA83080, RSZone 3Road 23Potable NetworkA84360, RSZone 1Road 02Potable NetworkA57090, RSZone 1Road 29Potable NetworkA54410, RSZone 1Road 30Potable NetworkA55630, Pre Test.1, RSZone 1Road 02Potable NetworkA85410, RSZone 1Road 09Potable NetworkA53840, RSZone 1Road 28Potable NetworkA54100, RSZone 1Road 28Potable NetworkA54110, RSZone 1Road 28Potable NetworkA54120, RSZone 1Road 29Potable NetworkA54390, RSZone 1Road 29Potable NetworkA54400, RSZone 1Road 30Potable NetworkA54660, RSZone 1Road 30Potable NetworkA54670, RSZone 1Road 30Potable NetworkA54680, RSZone 1Road 31Potable NetworkA54940, RSZone 1Road 31Potable NetworkA54950, RSZone 1Road 31Potable NetworkA54960, RSZone 1Road 09Potable NetworkA55300, RSZone 1Road 09Potable NetworkA55310, RSZone 1Road 09Potable NetworkA55320, RSZone 1Road 25Potable NetworkA55380, RSZone 1Road 25Potable NetworkA55390, RSZone 1Road 25Potable NetworkA55400, RSZone 1Road 09Potable NetworkA55710, RSZone 2Road 12Potable NetworkA74930 |  |  |  | 0.2d | 0d |  |  | MS |
| Milestone.14 |  | Road Crossing Finish Date | milestone | 0d | 2027-03-25 | 2027-03-25 | RSZone 3Road 04Road CrossingA79090 |  |  |  | 0.21d | 0d |  |  | MS |
| Milestone.11 |  | Sewage Network Finish Date | milestone | 0d | 2027-03-27 | 2027-03-27 | RSZone 3Road 21Sewage NetworkA94450, RSZone 1Road 02Sewage NetworkA86040, RSZone 1Road 02Sewage NetworkA86080, RSZone 1Road 02Sewage NetworkA86120, RSZone 1Road 02Sewage NetworkA20220, RSZone 1Road 02Sewage NetworkA20270, RSZone 1Road 02Sewage NetworkA20170, RSZone 1Road 02Sewage NetworkA20440, RSZone 1Road 02Sewage NetworkA20520, RSZone 1Road 02Sewage NetworkA20360, RSZone 1Road 02Sewage NetworkA34440, RSZone 1Road 02Sewage NetworkA34550, RSZone 1Road 02Sewage NetworkA34660, RSZone 1Road 09Sewage NetworkA32800, RSZone 1Road 09Sewage NetworkA33740, RSZone 1Road 09Sewage NetworkA34330, RSZone 1Road 24Sewage NetworkA33680, RSZone 1Road 24Sewage NetworkA33800, RSZone 1Road 26Sewage NetworkA33860, RSZone 1Road 27Sewage NetworkA33080, RSZone 1Road 27Sewage NetworkA33920, RSZone 1Road 28Sewage NetworkA33360, RSZone 1Road 28Sewage NetworkA33980, RSZone 1Road 29Sewage NetworkA33640, RSZone 1Road 29Sewage NetworkA34040, RSZone 1Road 30Sewage NetworkA34100, RSZone 1Road 31Sewage NetworkA34160, RSZone 2Road 10Sewage NetworkA91600, RSZone 2Road 12Sewage NetworkA92490, RSZone 2Road 13Sewage NetworkA92660, RSZone 1Road 02Sewage NetworkA86030, RSZone 1Road 09Sewage NetworkA32770, RSZone 1Road 09Sewage NetworkA32780, RSZone 1Road 09Sewage NetworkA32790, RSZone 1Road 27Sewage NetworkA33050, RSZone 1Road 27Sewage NetworkA33060, RSZone 1Road 27Sewage NetworkA33070, RSZone 1Road 28Sewage NetworkA33330, RSZone 1Road 28Sewage NetworkA33340, RSZone 1Road 28Sewage NetworkA33350, RSZone 1Road 29Sewage NetworkA33610, RSZone 1Road 29Sewage NetworkA33620, RSZone 1Road 29Sewage NetworkA33630 |  |  |  | 0.6d | 0d |  |  | MS |
| Milestone.8 |  | Telecom Network Finish Date | milestone | 0d | 2027-03-28 | 2027-03-28 | RSZone 1Road 02Telecom NetworkA85280, RSZone 1Road 02Telecom NetworkA85330, RSZone 1Road 02Telecom NetworkA85340, RSZone 1Road 09Telecom NetworkA58580, RSZone 1Road 09Telecom NetworkA63430, RSZone 1Road 09Telecom NetworkA67880, RSZone 1Road 24Telecom NetworkA59060, RSZone 1Road 24Telecom NetworkA68000, RSZone 1Road 25Telecom NetworkA59540, RSZone 1Road 25Telecom NetworkA68120, RSZone 1Road 26Telecom NetworkA60030, RSZone 1Road 26Telecom NetworkA64870, RSZone 1Road 26Telecom NetworkA68240, RSZone 1Road 27Telecom NetworkA60510, RSZone 1Road 27Telecom NetworkA68360, RSZone 1Road 27Telecom NetworkA65350, RSZone 1Road 28Telecom NetworkA60980, RSZone 1Road 28Telecom NetworkA60990, RSZone 1Road 28Telecom NetworkA65830, RSZone 1Road 29Telecom NetworkA61470, RSZone 1Road 28Telecom NetworkA68480, RSZone 1Road 29Telecom NetworkA66310, RSZone 1Road 30Telecom NetworkA61950, RSZone 1Road 30Telecom NetworkA66790, RSZone 1Road 29Telecom NetworkA68600, RSZone 1Road 30Telecom NetworkA68720, RSZone 1Road 31Telecom NetworkA62420, RSZone 1Road 31Telecom NetworkA68840, RSZone 1Road 32Telecom NetworkA62900, RSZone 1Road 32Telecom NetworkA67750, RSZone 1Road 32Telecom NetworkA68960, RSZone 2Road 01Telecom NetworkA77950, RSZone 2Road 01Telecom NetworkA77990, RSZone 1Road 32Telecom NetworkA68960 FF, RSZone 2Road 01Telecom NetworkA77920, RSZone 2Road 08Telecom NetworkA78040, RSZone 2Road 08Telecom NetworkA78010, RSZone 2Road 11Telecom NetworkA78220, RSZone 2Road 11Telecom NetworkA78190, RSZone 2Road 11Telecom NetworkA78270, RSZone 2Road 12Telecom NetworkA95880, RSZone 2Road 13Telecom NetworkA78400, RSZone 2Road 13Telecom NetworkA78370, RSZone 2Road 14Telecom NetworkA78490, RSZone 2Road 14Telecom NetworkA78460, RSZone 2Road 15Telecom NetworkA78580, RSZone 2Road 14Telecom NetworkA78460 FF, RSZone 2Road 15Telecom NetworkA78550, RSZone 2Road 16Telecom NetworkA78680, RSZone 2Road 16Telecom NetworkA78640, RSZone 2Road 17Telecom NetworkA86280, RSZone 2Road 17Telecom NetworkA86330, RSZone 2Road 18Telecom NetworkA78860, RSZone 2Road 18Telecom NetworkA78820, RSZone 2Road 19Telecom NetworkA88490, RSZone 2Road 20Telecom NetworkA86430, RSZone 2Road 19Telecom NetworkA88520, RSZone 2Road 20Telecom NetworkA86480, RSZone 3Road 03Telecom NetworkA86520, RSZone 3Road 03Telecom NetworkA86560, RSZone 3Road 03Telecom NetworkA88510, RSZone 3Road 04Telecom NetworkA86660, RSZone 3Road 04Telecom NetworkA86700, RSZone 3Road 04Telecom NetworkA86710, RSZone 3Road 05Telecom NetworkA86840, RSZone 3Road 05Telecom NetworkA86890, RSZone 3Road 06Telecom NetworkA86980, RSZone 3Road 06Telecom NetworkA87020, RSZone 3Road 06Telecom NetworkA87030, RSZone 3Road 07Telecom NetworkA87110, RSZone 3Road 07Telecom NetworkA87160, RSZone 3Road 10Telecom NetworkA87270, RSZone 3Road 10Telecom NetworkA87320, RSZone 3Road 10Telecom NetworkA87330, RSZone 3Road 21Telecom NetworkA87700, RSZone 3Road 21Telecom NetworkA87750, RSZone 3Road 22Telecom NetworkA87850, RSZone 3Road 23Telecom NetworkA87990, RSZone 3Road 23Telecom NetworkA88000, RSZone 1Road 31Telecom NetworkA62430, RSZone 3Road 23Telecom NetworkA88050, RSZone 2Road 19Telecom NetworkA88500, RSZone 2Road 13Telecom NetworkA78380, RSZone 1Road 02Telecom NetworkA85260, RSZone 3Road 10Telecom NetworkA87250, RSZone 3Road 22Telecom NetworkA87900, RSZone 1Road 09Telecom NetworkA58560, RSZone 1Road 25Telecom NetworkA59520, RSZone 1Road 25Telecom NetworkA59530, RSZone 1Road 32Telecom NetworkA62880, RSZone 2Road 12Telecom NetworkA95860, RSZone 1Road 31Telecom NetworkA62400 |  |  |  | 0.4d | 0d |  |  | MS |
| Milestone.12 |  | Storm Network Finish Date | milestone | 0d | 2027-04-03 | 2027-04-03 | RSZone 1Road 02Storm NetworkA85930, RSZone 1Road 02Storm NetworkA85680, RSZone 1Road 02Storm NetworkA85470, RSZone 1Road 02Storm NetworkA85760, RSZone 1Road 02Storm NetworkA85830, RSZone 1Road 02Storm NetworkA85880, RSZone 1Road 09Storm NetworkA88310, RSZone 1Road 09Storm NetworkA38030, RSZone 1Road 09Storm NetworkA51220, RSZone 1Road 09Storm NetworkA41830, RSZone 1Road 09Storm NetworkA44970, RSZone 1Road 09Storm NetworkA43080, RSZone 1Road 09Storm NetworkA53030, RSZone 1Road 09Storm NetworkA44210, RSZone 1Road 24Storm NetworkA48520, RSZone 1Road 24Storm NetworkA35430, RSZone 1Road 24Storm NetworkA45470, RSZone 1Road 24Storm NetworkA38730, RSZone 1Road 24Storm NetworkA94570, RSZone 1Road 25Storm NetworkA38330, RSZone 1Road 25Storm NetworkA48920, RSZone 1Road 25Storm NetworkA51470, RSZone 1Road 25Storm NetworkA53280, RSZone 1Road 25Storm NetworkA42130, RSZone 1Road 25Storm NetworkA43380, RSZone 1Road 25Storm NetworkA44410, RSZone 1Road 26Storm NetworkA34730, RSZone 1Road 26Storm NetworkA35880, RSZone 1Road 26Storm NetworkA38630, RSZone 1Road 26Storm NetworkA49320, RSZone 1Road 26Storm NetworkA45970, RSZone 1Road 26Storm NetworkA43680, RSZone 1Road 26Storm NetworkA42430, RSZone 1Road 26Storm NetworkA41200, RSZone 1Road 26Storm NetworkA39130, RSZone 1Road 26Storm NetworkA94690, RSZone 1Road 27Storm NetworkA88360, RSZone 1Road 27Storm NetworkA49720, RSZone 1Road 27Storm NetworkA46470, RSZone 1Road 27Storm NetworkA39530, RSZone 1Road 27Storm NetworkA41270, RSZone 1Road 27Storm NetworkA94810, RSZone 1Road 28Storm NetworkA36330, RSZone 1Road 28Storm NetworkA50120, RSZone 1Road 28Storm NetworkA39930, RSZone 1Road 28Storm NetworkA41340, RSZone 1Road 28Storm NetworkA46970, RSZone 1Road 29Storm NetworkA36780, RSZone 1Road 29Storm NetworkA50520, RSZone 1Road 29Storm NetworkA40330, RSZone 1Road 29Storm NetworkA41410, RSZone 1Road 29Storm NetworkA47470, RSZone 1Road 30Storm NetworkA88410, RSZone 1Road 30Storm NetworkA34880, RSZone 1Road 30Storm NetworkA50920, RSZone 1Road 30Storm NetworkA41470, RSZone 1Road 30Storm NetworkA47970, RSZone 1Road 30Storm NetworkA40730, RSZone 1Road 31Storm NetworkA88260, RSZone 1Road 31Storm NetworkA43980, RSZone 1Road 31Storm NetworkA42730, RSZone 1Road 31Storm NetworkA41130, RSZone 1Road 32Storm NetworkA88460, RSZone 1Road 32Storm NetworkA51720, RSZone 1Road 32Storm NetworkA53530, RSZone 1Road 32Storm NetworkA48470, RSZone 1Road 32Storm NetworkA94980, RSZone 2Road 01Storm NetworkA74140, RSZone 2Road 01Storm NetworkA73000, RSZone 2Road 01Storm NetworkA74600, RSZone 2Road 01Storm NetworkA73250, RSZone 2Road 01Storm NetworkA73430, RSZone 2Road 01Storm NetworkA73050, RSZone 2Road 08Storm NetworkA90590, RSZone 2Road 08Storm NetworkA90660, RSZone 2Road 10Storm NetworkA91510, RSZone 2Road 11Storm NetworkA72950, RSZone 2Road 11Storm NetworkA74290, RSZone 2Road 11Storm NetworkA73580, RSZone 2Road 11Storm NetworkA73200, RSZone 2Road 11Storm NetworkA73400, RSZone 2Road 11Storm NetworkA74750, RSZone 2Road 11Storm NetworkA73640, RSZone 2Road 12Storm NetworkA73690, RSZone 2Road 15Storm NetworkA73890, RSZone 2Road 14Storm NetworkA92770, RSZone 2Road 12Storm NetworkA92400, RSZone 2Road 15Storm NetworkA93080, RSZone 2Road 17Storm NetworkA93250, RSZone 2Road 19Storm NetworkA93410, RSZone 2Road 20Storm NetworkA86370, RSZone 2Road 20Storm NetworkA93480, RSZone 3Road 03Storm NetworkA93550, RSZone 3Road 04Storm NetworkA86790, RSZone 3Road 04Storm NetworkA82520, RSZone 3Road 04Storm NetworkA81270, RSZone 3Road 04Storm NetworkA95470, RSZone 3Road 05Storm NetworkA93980, RSZone 3Road 06Storm NetworkA94060, RSZone 3Road 07Storm NetworkA87200, RSZone 3Road 07Storm NetworkA94200, RSZone 3Road 10Storm NetworkA87660, RSZone 3Road 10Storm NetworkA87550, RSZone 3Road 10Storm NetworkA87610, RSZone 3Road 10Storm NetworkA95540, RSZone 3Road 21Storm NetworkA87790, RSZone 3Road 21Storm NetworkA95610, RSZone 3Road 21Storm NetworkA87790 FF, RSZone 3Road 22Storm NetworkA87940, RSZone 3Road 22Storm NetworkA95680, RSZone 3Road 23Storm NetworkA95810, RSZone 1Road 25Storm NetworkA38290, RSZone 1Road 25Storm NetworkA38300, RSZone 1Road 25Storm NetworkA38310, RSZone 1Road 25Storm NetworkA38320 |  |  |  | 14.4d | 0d |  |  | MS |
|  | 2 | **Engineering Works** |  |  | 2025-05-19 | 2026-10-26 |  |  |  |  |  |  |  |  |  |
|  | 1 | **Shop Drawings Works** |  |  | 2025-05-19 | 2026-10-26 |  |  |  |  |  |  |  |  |  |
|  | 1 | **Submittal** |  |  | 2025-05-19 | 2026-10-15 |  |  |  |  |  |  |  |  |  |
| Engineering Submittal .1 |  | Storm Network Package Submittal |  | 410d | 2025-05-19 A | 2026-09-14 A | Milestone.1 | 100% |  |  |  |  |  | Labour [4380 h] | ENG |
| Engineering Submittal .2 |  | Sewage Network Package Submittal |  | 415d | 2025-05-19 A | 2026-09-20 A | Milestone.1 | 100% |  |  |  |  |  | Labour [4380 h] | ENG |
| Engineering Submittal .3 |  | Potable Network Package Submittal |  | 417d | 2025-05-19 A | 2026-09-23 A | Milestone.1 | 100% | 2025-05-19 | 2026-09-22 |  |  |  | Labour [4380 h] | ENG |
| Engineering Submittal .4 |  | Lateral Irrigation Network Package Submittal |  | 422d | 2025-05-19 A | 2026-09-29 A | Milestone.1 | 100% |  |  |  |  |  | Labour [4380 h] | ENG |
| Engineering Submittal .5 |  | Road Crossing Package Submittal |  | 423.9d | 2025-05-19 A | 2026-10-01 A | Milestone.1 | 100% |  |  |  |  |  | Labour [4380 h] | ENG |
| Engineering Submittal .6 |  | Telecom Network Package Submittal |  | 428d | 2025-05-19 A | 2026-10-06 A | Milestone.1 | 100% |  |  |  |  |  | Labour [4380 h] | ENG |
| Engineering Submittal .7 |  | Main Road Package Submittal |  | 432d | 2025-05-19 A | 2026-10-11 A | Milestone.1 | 100% |  |  |  |  |  | Labour [4380 h] | ENG |
| Engineering Submittal .8 |  | Secondary Irrigation Package Sumbittal |  | 435.9d | 2025-05-19 A | 2026-10-15 A | Milestone.1 | 100% |  |  |  |  |  | Labour [4380 h] | ENG |

| ID | WBS | Activity | Duration | Start | Finish | Predecessors | Complete | Remaining | Planned start | Planned finish | Total float | Free float | Calendar | Resources | MODON |
| --- | --- | --- | --- | --- | --- | --- | --- | --- | --- | --- | --- | --- | --- | --- | --- |
|  | 2 | **Approval** |  | 2026-09-13 | 2026-10-26 |  |  |  |  |  |  |  |  |  |  |
| Engineering Approval.1 |  | Storm Network Package Approval | 4d | 2026-09-13 A | 2026-09-16 A | Engineering Submittal .1 | 100% |  |  |  |  |  |  | Labour [4380 h] | ENG |
| Engineering Approval.2 |  | Sewage Network Package Approval | 9d | 2026-09-17 A | 2026-09-28 A | Engineering Submittal .2 | 100% |  | 2026-09-17 | 2026-09-29 |  |  |  | Labour [4380 h] | ENG |
| Engineering Approval.3 |  | Potable Network Package Approval | 6d | 2026-09-22 A | 2026-09-29 A | Engineering Submittal .3 | 100% |  |  |  |  |  |  | Labour [4380 h] | ENG |
| Engineering Approval.4 |  | Lateral Irrigation Network Package Approval | 19d | 2026-09-27 A | 2026-10-18 A | Engineering Submittal .4 | 100% |  |  |  |  |  |  | Labour [4380 h] | ENG |
| Engineering Approval.5 |  | Road Crossing Package Approval | 17d | 2026-09-29 A | 2026-10-18 A | Engineering Submittal .5 | 100% |  |  |  |  |  |  | Labour [4380 h] | ENG |
| Engineering Approval.6 |  | Telecom Network Package Approval | 15d | 2026-10-01 A | 2026-10-18 A | Engineering Submittal .6 | 100% |  | 2026-10-01 | 2026-10-19 |  |  |  | Labour [4380 h] | ENG |
| Engineering Approval.7 |  | Main Road Package Approval | 15d | 2026-10-05 A | 2026-10-21 A | Engineering Submittal .7 | 100% |  |  |  |  |  |  | Labour [4380 h] | ENG |
| Engineering Approval.8 |  | Secondary Irrigation Package Approval | 16d | 2026-10-08 A | 2026-10-26 A | Engineering Submittal .8 | 100% |  | 2026-10-08 | 2026-10-27 |  |  |  | Labour [4380 h] | ENG |
|  | 3 | **Procurement Works** |  | 2026-06-25 | 2027-02-14 |  |  |  |  |  |  |  |  |  |  |
|  | 1 | **PO Issue** |  | 2026-06-25 | 2026-10-12 |  |  |  |  |  |  |  |  |  |  |
| Procurment.Po.1 |  | Pumps PO Issue | 75d | 2026-06-25 A | 2026-09-20 A | Engineering Approval.8 | 100% |  | 2026-06-25 | 2026-09-21 |  |  |  | Labour [10 h] | Pro |
| Procurment.Po.3 |  | Generators PO Issue | 31.9d | 2026-08-25 A | 2026-10-01 A | Engineering Approval.3 | 100% |  |  |  |  |  |  | Labour [10 h] | Pro |
| Procurment.Po.4 |  | Water Pumps PO Issue | 37d | 2026-08-25 A | 2026-10-07 A | Engineering Approval.3 | 100% |  |  |  |  |  |  | Labour [10 h] | Pro |
| Procurment.Po.5 |  | Surge Vessel PO Issue | 41d | 2026-08-25 A | 2026-10-12 A | Engineering Approval.4 | 100% |  |  |  |  |  |  | Labour [10 h] | Pro |
| Procurment.Po.2 |  | Water Station- Control Panel PO Issue | 2d | 2026-09-21 A | 2026-09-23 A | Engineering Approval.2 | 100% |  | 2026-09-21 | 2026-09-22 |  |  |  | Labour [10 h] | Pro |
| Procurment.Po.6 |  | Waste Water Satation - Control Water PO Issue | 5d | 2026-09-24 A | 2026-09-29 A | Engineering Approval.2 | 100% |  | 2026-09-24 | 2026-09-30 |  |  |  | Labour [10 h] | Pro |
|  | 2 | **DOS** |  | 2026-07-20 | 2027-02-14 |  |  |  |  |  |  |  |  |  |  |
| Procurment.Dos.6 |  | Pumps DOS (old) | 80d | 2026-07-20 A | 2026-10-21 A | Procurment.Po.1 | 100% |  |  |  |  |  |  | Labour [28381 h] | Pro |
| Procurment.Dos.2-old |  | Generators DOS (old) | 7d | 2026-10-25 A | 2026-11-01 A | Procurment.Po.3 | 100% |  |  |  |  |  |  | Labour [15765.5 h] | Pro |
| Procurment.Dos.1 |  | Water Station- Control Panel DOS | 90d | 2026-11-02 A | 2027-02-14 | Procurment.Po.2 | 7% | 84d | 2026-11-09 | 2027-02-23 | 0.6d | 0d |  | Labour [31526 h] | Pro |
| Procurment.Dos.2 |  | Generators DOS | 40.5d | 2026-11-02 A | 2026-12-19 | Procurment.Dos.2-old | 15% | 34.5d | 2026-11-09 | 2026-12-26 | 51.23d | 40.43d |  | Labour [141904 h] | Pro |
| Procurment.Dos.3 |  | Water Pumps DOS | 90d | 2026-11-02 A | 2027-02-14 | Procurment.Po.4 | 7% | 84d | 2026-11-09 | 2027-02-23 | 5.33d | 0d |  | Labour [31526 h] | Pro |
| Procurment.Dos.4 |  | Surge Vessel DOS | 40d | 2026-11-02 A | 2026-12-15 | Procurment.Po.5 | 20% | 32d | 2026-11-09 | 2026-12-24 | 66.4d | 0d |  | Labour [189206 h] | Pro |
| Procurment.Dos.5 |  | Waste Water Satation - Control Water DOS | 90d | 2026-11-02 A | 2027-02-14 | Procurment.Po.6 | 7% | 84d | 2026-11-09 | 2027-02-23 | 0.6d | 0d |  | Labour [31526 h] | Pro |
| Procurment.Dos.14 |  | Pumps DOS | 68d | 2026-11-09 | 2027-01-27 | Procurment.Dos.6 |  |  |  |  | 9.67d | 0d | UADC02 | Labour [160825 h] |  |

| ID | WBS | Activity | Duration | Start | Finish | Predecessors | Complete | Remaining | Planned start | Planned finish | Total float | Free float | Resources | Cost | Actual cost | MODON |
| --- | --- | --- | --- | --- | --- | --- | --- | --- | --- | --- | --- | --- | --- | --- | --- | --- |
|  | 6 | **Pre Testing & Testing Works** |  | 2025-09-16 | 2027-05-02 |  |  |  |  |  |  |  |  |  |  |  |
|  | 4 | **Pre Construction Testing** |  | 2025-09-16 | 2026-11-25 |  |  |  |  |  |  |  |  |  |  |  |
| Pre Test.2-old |  | Irrigation Network Pre Testing (old) | 351d | 2025-09-16 A | 2026-11-01 A | Milestone.1 | 100% |  |  |  |  |  | Labour [18318.8 h]; Pre Test QTY [54988.6] |  |  | Test |
| Pre Test.3-old |  | Sewage Network Pre Testing (old) | 312d | 2025-11-02 A | 2026-11-01 A | Milestone.1 | 100% |  |  |  |  |  | Labour [7172.39 h]; Pre Test QTY [12895.4] |  |  | Test |
| Pre Test.5 |  | Telecom Network Pre Testing | 263d | 2025-11-25 A | 2026-09-28 A | Milestone.1 | 100% |  |  |  |  |  | Labour [25955.6 h]; Pre Test QTY [60669] |  |  | Test |
| Pre Test.1-old |  | Potable Network Pre Testing (old) | 124d | 2026-06-09 A | 2026-11-01 A | Milestone.1 | 100% |  |  |  |  |  | Labour [19619.5 h]; Pre Test QTY [55875.3] |  |  | Test |
| Pre Test.4-old |  | Storm Network Pre Testing (old) | 79d | 2026-08-01 A | 2026-11-01 A | Milestone.1 | 100% |  |  |  |  |  | Labour [507.58 h]; Pre Test QTY [1801.93] |  |  | Test |
| Pre Test.3 |  | Sewage Network Pre Testing | 10.86d | 2026-11-04 A | 2026-11-21 | Pre Test.3-old | 1% | 10.73d | 2026-11-09 | 2026-11-21 | 90.67d | 0d | Labour [18783.2 h]; Pre Test QTY [33770.6] |  |  | Test |
| Pre Test.1 |  | Potable Network Pre Testing | 3.66d | 2026-11-09 | 2026-11-12 | Pre Test.1-old |  |  |  |  | 96d | 0d | Labour [6336.04 h]; Pre Test QTY [18044.7] |  |  | Test |
| Pre Test.2 |  | Irrigation Network Pre Testing | 4.41d | 2026-11-09 | 2026-11-14 | Pre Test.2-old |  |  |  |  | 0.64d | 0d | Labour [7636.7 h]; Pre Test QTY [22923.4] |  |  | Test |
| Pre Test.4 |  | Storm Network Pre Testing | 14.71d | 2026-11-09 | 2026-11-25 | Pre Test.4-old |  |  |  |  | 101.93d | 0d | Labour [25448 h]; Pre Test QTY [90342.1] |  |  | Test |
|  | 12 | **Testing & Comissioning** |  | 2027-03-17 | 2027-05-02 |  |  |  |  |  |  |  |  |  |  |  |
| T&C.1 |  | Lateral Irrigation Network T&C | 15d | 2027-03-17 | 2027-04-08 | Milestone.10 |  |  |  |  | 34.64d | 20.24d | Labour [25955.6 h] |  |  | Test |
| T&C.2 |  | Potable Water T&C | 11d | 2027-03-18 | 2027-04-04 | Milestone.9 |  |  |  |  | 38.2d | 23.8d | Labour [25955.6 h] |  |  | Test |
| T&C.3 |  | Seweage Testing & Comissiong | 25d | 2027-03-27 | 2027-04-25 | Milestone.11 |  |  |  |  | 20.6d | 6.2d | Labour [25955.6 h] |  |  | Test |
| T&C.4 |  | Storm Network T&C | 25d | 2027-04-03 | 2027-05-02 | Milestone.12 |  |  |  |  | 14.4d | 0d | Labour [25955.6 h] |  |  | Test |
|  | 5 | **Construction Works** |  | 2025-06-19 | 2027-04-03 |  |  |  |  |  |  |  |  |  |  |  |
|  | 2 | **Revised Scope** |  | 2025-06-19 | 2027-04-03 |  |  |  |  |  |  |  |  |  |  |  |
|  | 11 | **Zone 1** |  | 2025-06-19 | 2027-03-31 |  |  |  |  |  |  |  |  |  |  |  |
|  | 8 | **Road 2** |  | 2025-07-28 | 2027-03-17 |  |  |  |  |  |  |  |  |  |  |  |
|  | 9 | **Storm Network** |  | 2026-05-19 | 2026-12-06 |  |  |  |  |  |  |  |  |  |  |  |
|  | 1 | **Gullies & Catchbasin Pipes** |  | 2026-09-13 | 2026-12-06 |  |  |  |  |  |  |  |  |  |  |  |
| RSZone 1Road 02Storm NetworkA85890-old |  | Zone 1 - Road 2 - Storm Network - Gullies & Catchbasin Pipes - Excavation (old) | 42d | 2026-09-13 A | 2026-11-01 A | Engineering Approval.1, RSZone 3Road 22Storm NetworkA87960, Pre Test.4-old | 100% |  |  |  |  |  | Contract Price Original Scope [43905.3 SAR]; Excavator Operator [22.32 h]; Dump Truck Operator [22.32 h]; Labour [374.84 h]; Gullies & Catchbasin Pipes (300 mm) [1095.91] | 43,905.33 | 43,905.33 | RD2 |
| RSZone 1Road 02Storm NetworkA85900-old |  | Zone 1 - Road 2 - Storm Network - Gullies & Catchbasin Pipes - Bedding (old) | 40d | 2026-09-15 A | 2026-11-01 A | RSZone 1Road 02Storm NetworkA85890-old | 100% |  |  |  |  |  | Contract Price Original Scope [124905 SAR]; Compactor Operator [14.08 h]; Equipment Operator [14.08 h]; Water Truck Operator [14.08 h]; Labour [1066.38 h]; Gullies & Catchbasin Pipes - Bedding [1036.83] | 124,905.35 | 124,905.35 | RD2 |
| RSZone 1Road 02Storm NetworkA85910-old |  | Zone 1 - Road 2 - Storm Network - Gullies & Catchbasin Pipes - Pipe Installation (old) | 38d | 2026-09-17 A | 2026-11-01 A | RSZone 1Road 02Storm NetworkA85900-old | 100% |  | 2026-09-17 | 2026-11-02 |  |  | Contract Price Original Scope [290814 SAR]; Excavator Operator [28.16 h]; Crane Operator [28.16 h]; Equipment Operator [28.16 h]; Labour [2482.82 h]; Gullies & Catchbasin Pipes (300 mm) [1036.99] | 290,813.82 | 290,813.82 | RD2 |
| RSZone 1Road 02Storm NetworkA85890 |  | Zone 1 - Road 2 - Storm Network - Gullies & Catchbasin Pipes - Excavation | 1.28d | 2026-11-25 | 2026-11-26 | RSZone 1Road 02Storm NetworkA85890-old, Pre Test.4 |  |  |  |  | 101.93d | 0d | Contract Price Original Scope [15107.2 SAR]; Excavator Operator [7.68 h]; Dump Truck Operator [7.68 h]; Labour [128.98 h]; Gullies & Catchbasin Pipes (300 mm) [377.09] | 15,107.21 |  | RD2 |
| RSZone 1Road 02Storm NetworkA85900 |  | Zone 1 - Road 2 - Storm Network - Gullies & Catchbasin Pipes - Bedding | 1d | 2026-11-26 | 2026-11-28 | RSZone 1Road 02Storm NetworkA85900-old, RSZone 1Road 02Storm NetworkA85890 |  |  |  |  | 101.93d | 0d | Contract Price Original Scope [52545 SAR]; Compactor Operator [5.92 h]; Equipment Operator [5.92 h]; Water Truck Operator [5.92 h]; Labour [448.6 h]; Gullies & Catchbasin Pipes - Bedding [436.17] | 52,545.03 |  | RD2 |
| RSZone 1Road 02Storm NetworkA85910 |  | Zone 1 - Road 2 - Storm Network - Gullies & Catchbasin Pipes - Pipe Installation | 1.48d | 2026-11-28 | 2026-11-30 | RSZone 1Road 02Storm NetworkA85910-old, RSZone 1Road 02Storm NetworkA85900 |  |  |  |  | 101.93d | 0d | Contract Price Original Scope [122274 SAR]; Excavator Operator [11.84 h]; Crane Operator [11.84 h]; Equipment Operator [11.84 h]; Labour [1043.91 h]; Gullies & Catchbasin Pipes (300 mm) [436.01] | 122,273.99 |  | RD2 |
| RSZone 1Road 02Storm NetworkA85920 |  | Zone 1 - Road 2 - Storm Network - Gullies & Catchbasin Pipes - Test | 2d | 2026-11-30 | 2026-12-02 | RSZone 1Road 02Storm NetworkA85910, RSZone 1Road 02Storm NetworkA85890, RSZone 1Road 02Storm NetworkA85900 |  |  |  |  | 101.93d | 0d | Contract Price Original Scope [59012.6 SAR]; Pump Operator [20 h]; Equipment Operator [20 h]; Labour [503.82 h]; Gullies & Catchbasin Pipes (300 mm) [1473] | 59,012.55 |  | RD2 |
| RSZone 1Road 02Storm NetworkA85930 |  | Zone 1 - Road 2 - Storm Network - Gullies & Catchbasin Pipes - Backfilling | 3d | 2026-12-02 | 2026-12-06 | RSZone 1Road 02Storm NetworkA85920 |  |  |  |  | 101.93d | 87.53d | Contract Price Original Scope [59012.6 SAR]; Excavator Operator [20 h]; Compactor Operator [20 h]; Dump Truck Operator [20 h]; Water Truck Operator [20 h]; Labour [503.82 h]; Gullies & Catchbasin Pipes (300 mm) [1473] | 59,012.55 |  | RD2 |

| ID | WBS | Activity | Duration | Start | Finish | Predecessors | Complete | Planned start | Planned finish | Total float | Free float | Resources | Cost | Actual cost | MODON |
| --- | --- | --- | --- | --- | --- | --- | --- | --- | --- | --- | --- | --- | --- | --- | --- |
|  | 8 | **Perforated 200 mm** |  | 2026-05-20 | 2026-06-09 |  |  |  |  |  |  |  |  |  |  |
| RSZone 1Road 02Storm NetworkA85490 |  | Zone 1 - Road 2 - Storm Network - Perforated 200 mm - Excavation | 4d | 2026-05-20 A | 2026-05-24 A | Milestone.1 | 100% |  |  |  |  | Contract Price Original Scope [71077.6 SAR]; Excavator Operator [30 h]; Dump Truck Operator [30 h]; Labour [606.82 h]; Perforated 200 mm [2804] | 71,077.55 | 71,077.55 | RD2 |
| RSZone 1Road 02Storm NetworkA85500 |  | Zone 1 - Road 2 - Storm Network - Perforated 200 mm - Bedding | 2d | 2026-05-25 A | 2026-05-26 A | RSZone 1Road 02Storm NetworkA85490 | 100% |  |  |  |  | Contract Price Original Scope [35538.8 SAR]; Compactor Operator [20 h]; Equipment Operator [20 h]; Water Truck Operator [20 h]; Labour [303.41 h]; Perforated 200 mm [2804] | 35,538.77 | 35,538.77 | RD2 |
| RSZone 1Road 02Storm NetworkA85510 |  | Zone 1 - Road 2 - Storm Network - Perforated 200 mm - Pipe Installation | 7d | 2026-05-27 A | 2026-06-03 A | RSZone 1Road 02Storm NetworkA85500 | 100% |  |  |  |  | Contract Price Original Scope [462004 SAR]; Excavator Operator [40 h]; Crane Operator [40 h]; Equipment Operator [40 h]; Labour [3944.35 h]; Perforated 200 mm [2804] | 462,004.05 | 462,004.05 | RD2 |
| RSZone 1Road 02Storm NetworkA85520 |  | Zone 1 - Road 2 - Storm Network - Perforated 200 mm - Test | 3d | 2026-06-04 A | 2026-06-07 A | RSZone 1Road 02Storm NetworkA85510 | 100% | 2026-06-04 | 2026-06-08 |  |  | Contract Price Original Scope [71077.6 SAR]; Pump Operator [20 h]; Equipment Operator [20 h]; Labour [606.82 h]; Perforated 200 mm [2804] | 71,077.55 | 71,077.55 | RD2 |
| RSZone 1Road 02Storm NetworkA85530 |  | Zone 1 - Road 2 - Storm Network - Perforated 200 mm - Backfilling | 2d | 2026-06-08 A | 2026-06-09 A | RSZone 1Road 02Storm NetworkA85520 | 100% |  |  |  |  | Contract Price Original Scope [71077.6 SAR]; Excavator Operator [20 h]; Compactor Operator [20 h]; Dump Truck Operator [20 h]; Water Truck Operator [20 h]; Labour [606.82 h]; Perforated 200 mm [2804] | 71,077.55 | 71,077.55 | RD2 |
|  | 2 | **Collection Pipes 150 MM** |  | 2026-05-24 | 2026-11-12 |  |  |  |  |  |  |  |  |  |  |
| RSZone 1Road 02Storm NetworkA85640 |  | Zone 1 - Road 2 - Storm Network - Collection Pipes 150 MM - Excavation | 4d | 2026-05-24 A | 2026-05-27 A | RSZone 1Road 02Storm NetworkA85530 | 100% |  |  |  |  | Contract Price Original Scope [411 SAR]; Excavator Operator [30 h]; Dump Truck Operator [30 h]; Labour [3.51 h]; Collection Pipes 150 MM [86] | 411 | 411 | RD2 |
| RSZone 1Road 02Storm NetworkA85650 |  | Zone 1 - Road 2 - Storm Network - Collection Pipes 150 MM - Bedding | 4d | 2026-05-28 A | 2026-06-01 A | RSZone 1Road 02Storm NetworkA85640 | 100% | 2026-05-28 | 2026-06-02 |  |  | Contract Price Original Scope [205.5 SAR]; Compactor Operator [20 h]; Equipment Operator [20 h]; Water Truck Operator [20 h]; Labour [1.75 h]; Collection Pipes 150 MM [86] | 205.5 | 205.5 | RD2 |
| RSZone 1Road 02Storm NetworkA85660 |  | Zone 1 - Road 2 - Storm Network - Collection Pipes 150 MM - Pipe Installation | 5d | 2026-06-02 A | 2026-06-07 A | RSZone 1Road 02Storm NetworkA85650 | 100% |  |  |  |  | Contract Price Original Scope [2671.5 SAR]; Excavator Operator [40 h]; Crane Operator [40 h]; Equipment Operator [40 h]; Labour [22.81 h]; Collection Pipes 150 MM [86] | 2,671.5 | 2,671.5 | RD2 |
| RSZone 1Road 02Storm NetworkA85670 |  | Zone 1 - Road 2 - Storm Network - Collection Pipes 150 MM - Test | 2d | 2026-11-09 | 2026-11-10 | RSZone 1Road 02Storm NetworkA85660 |  |  |  | 121.4d | 0d | Contract Price Original Scope [411 SAR]; Pump Operator [20 h]; Equipment Operator [20 h]; Labour [3.51 h]; Collection Pipes 150 MM [86] | 411 |  | RD2 |
| RSZone 1Road 02Storm NetworkA85680 |  | Zone 1 - Road 2 - Storm Network - Collection Pipes 150 MM - Backfilling | 2d | 2026-11-11 | 2026-11-12 | RSZone 1Road 02Storm NetworkA85670 |  |  |  | 121.4d | 107d | Contract Price Original Scope [411 SAR]; Excavator Operator [20 h]; Compactor Operator [20 h]; Dump Truck Operator [20 h]; Water Truck Operator [20 h]; Labour [3.51 h]; Collection Pipes 150 MM [86] | 411 |  | RD2 |
|  | 12 | **Inspection Chamber** |  | 2026-09-09 | 2026-12-02 |  |  |  |  |  |  |  |  |  |  |
| RSZone 1Road 02Storm NetworkA85430-old |  | Zone 1 - Road 2 - Storm Network - Inspection Chamber - Excavation (old) | 45d | 2026-09-09 A | 2026-11-01 A | RSZone 1Road 02Storm NetworkA85910-old | 100% |  |  |  |  | Contract Price Original Scope [207279 SAR]; Excavator Operator [29.41 h]; Dump Truck Operator [29.41 h]; Labour [1769.64 h]; Inspection Chamber [50] | 207,279.05 | 207,279.05 | RD2 |
| RSZone 1Road 02Storm NetworkA85440-old |  | Zone 1 - Road 2 - Storm Network - Inspection Chamber - IC Installation (old) | 42d | 2026-09-13 A | 2026-11-01 A | RSZone 1Road 02Storm NetworkA85430-old | 100% |  |  |  |  | Contract Price Original Scope [829187 SAR]; Crane Operator [39.22 h]; Boom Truck Operator [39.22 h]; Equipment Operator [39.22 h]; Labour [7079.17 h]; Inspection Chamber [50] | 829,186.69 | 829,186.69 | RD2 |
| RSZone 1Road 02Storm NetworkA85450-old |  | Zone 1 - Road 2 - Storm Network - Inspection Chamber - D.I (old) | 41d | 2026-09-14 A | 2026-11-01 A | RSZone 1Road 02Storm NetworkA85440-old | 100% |  |  |  |  | Contract Price Original Scope [138273 SAR]; Crane Operator [6.87 h]; Boom Truck Operator [6.87 h]; Equipment Operator [6.87 h]; Labour [1180.51 h]; Inspection Chamber [50.03] | 138,273.29 | 138,273.29 | RD2 |
| RSZone 1Road 02Storm NetworkA85430 |  | Zone 1 - Road 2 - Storm Network - Inspection Chamber - Excavation | 1d | 2026-11-02 A | 2026-11-05 A | RSZone 1Road 02Storm NetworkA85430-old, RSZone 1Road 02Storm NetworkA85910-old | 100% | 2026-11-23 | 2026-11-24 |  |  | Contract Price Original Scope [4158.27 SAR]; Excavator Operator [0.59 h]; Dump Truck Operator [0.59 h]; Labour [35.5 h]; Inspection Chamber [1] | 4,158.27 | 4,158.27 | RD2 |
| RSZone 1Road 02Storm NetworkA85440 |  | Zone 1 - Road 2 - Storm Network - Inspection Chamber - IC Installation | 1d | 2026-11-02 A | 2026-11-05 A | RSZone 1Road 02Storm NetworkA85440-old, RSZone 1Road 02Storm NetworkA85430 | 100% | 2026-11-24 | 2026-11-25 |  |  | Contract Price Original Scope [16562.6 SAR]; Crane Operator [0.78 h]; Boom Truck Operator [0.78 h]; Equipment Operator [0.78 h]; Labour [141.4 h]; Inspection Chamber [1] | 16,562.59 | 16,562.59 | RD2 |
| RSZone 1Road 02Storm NetworkA85450 |  | Zone 1 - Road 2 - Storm Network - Inspection Chamber - D.I | 1d | 2026-11-09 | 2026-11-09 | RSZone 1Road 02Storm NetworkA85450-old, RSZone 1Road 02Storm NetworkA85440 |  |  |  | 111.3d | 0d | Contract Price Original Scope [2684.92 SAR]; Crane Operator [0.13 h]; Boom Truck Operator [0.13 h]; Equipment Operator [0.13 h]; Labour [22.92 h]; Inspection Chamber [0.97] | 2,684.92 |  | RD2 |
| RSZone 1Road 02Storm NetworkA85460 |  | Zone 1 - Road 2 - Storm Network - Inspection Chamber - Inner Isolation | 2d | 2026-11-10 | 2026-11-11 | RSZone 1Road 02Storm NetworkA85450 |  |  |  | 120.4d | 15.47d | Contract Price Original Scope [140958 SAR]; Equipment Operator [20 h]; Labour [1203.43 h]; Inspection Chamber [51] | 140,958.21 |  | RD2 |
| RSZone 1Road 02Storm NetworkA85470 |  | Zone 1 - Road 2 - Storm Network - Inspection Chamber - Backfilling | 2d | 2026-11-30 | 2026-12-02 | RSZone 1Road 02Storm NetworkA85460, RSZone 1Road 02Storm NetworkA85430, RSZone 1Road 02Storm NetworkA85440, RSZone 1Road 02Storm NetworkA85910 |  |  |  | 104.93d | 90.53d | Contract Price Original Scope [70479.1 SAR]; Excavator Operator [20 h]; Compactor Operator [20 h]; Dump Truck Operator [20 h]; Water Truck Operator [20 h]; Labour [601.71 h]; Inspection Chamber [51] | 70,479.11 |  | RD2 |
|  | 11 | **Gravel and Geotextile** |  | 2026-05-19 | 2026-05-20 |  |  |  |  |  |  |  |  |  |  |
| RSZone 1Road 02Storm NetworkA85480 |  | Zone 1 - Road 2 - Storm Network - Gravel and Geotextile - Installation | 2d | 2026-05-19 A | 2026-05-20 A | RSZone 1Road 02Storm NetworkA85660 | 100% |  |  |  |  | Contract Price Original Scope [328904 SAR]; Excavator Operator [7 h]; Dump Truck Operator [7 h]; Equipment Operator [7 h]; Water Truck Operator [7 h]; Labour [2808.02 h]; Gravel and Geotextile [2804] | 328,904.33 | 328,904.33 | RD2 |
|  | 7 | **Soakaway** |  | 2026-07-19 | 2026-11-14 |  |  |  |  |  |  |  |  |  |  |
| RSZone 1Road 02Storm NetworkA85740 |  | Zone 1 - Road 2 - Storm Network - Soakaway - Excavation | 4d | 2026-07-19 A | 2026-07-22 A | RSZone 1Road 02Storm NetworkA85480 | 100% |  |  |  |  | Contract Price Original Scope [54242.3 SAR]; Excavator Operator [30 h]; Dump Truck Operator [30 h]; Labour [463.09 h]; Soakaway [17] | 54,242.33 | 54,242.33 | RD2 |
| RSZone 1Road 02Storm NetworkA85750 |  | Zone 1 - Road 2 - Storm Network - Soakaway - Installation | 0.9d | 2026-07-23 A | 2026-07-24 A | RSZone 1Road 02Storm NetworkA85740 | 100% | 2026-07-23 | 2026-07-23 |  |  | Contract Price Original Scope [216969 SAR]; Crane Operator [7 h]; Equipment Operator [7 h]; Labour [1852.37 h]; Soakaway [17] | 216,969.33 | 216,969.33 | RD2 |
| RSZone 1Road 02Storm NetworkA85770-old |  | Zone 1 - Road 2 - Storm Network - Soakaway - Inner Isolation (old) | 42d | 2026-09-13 A | 2026-11-01 A | RSZone 1Road 02Storm NetworkA85450-old | 100% |  |  |  |  | Contract Price Original Scope [10637.5 SAR]; Equipment Operator [5.88 h]; Labour [90.82 h]; Soakaway [5] | 10,637.52 | 10,637.52 | RD2 |
| RSZone 1Road 02Storm NetworkA85780-old |  | Zone 1 - Road 2 - Storm Network - Soakaway - Backfilling (old) | 41d | 2026-09-14 A | 2026-11-01 A | RSZone 1Road 02Storm NetworkA85770-old | 100% |  |  |  |  | Contract Price Original Scope [5318.76 SAR]; Excavator Operator [5.88 h]; Compactor Operator [5.88 h]; Dump Truck Operator [5.88 h]; Water Truck Operator [5.88 h]; Labour [45.41 h]; Soakaway [5] | 5,318.76 | 5,318.76 | RD2 |
| RSZone 1Road 02Storm NetworkA85770 |  | Zone 1 - Road 2 - Storm Network - Soakaway - Inner Isolation | 1.41d | 2026-11-10 | 2026-11-11 | RSZone 1Road 02Storm NetworkA85770-old, RSZone 1Road 02Storm NetworkA85450 |  |  |  | 111.3d | 0d | Contract Price Original Scope [25524 SAR]; Equipment Operator [14.12 h]; Labour [217.91 h]; Soakaway [12] | 25,524.03 |  | RD2 |
| RSZone 1Road 02Storm NetworkA85780 |  | Zone 1 - Road 2 - Storm Network - Soakaway - Backfilling | 1.41d | 2026-11-11 | 2026-11-12 | RSZone 1Road 02Storm NetworkA85780-old, RSZone 1Road 02Storm NetworkA85770 |  |  |  | 111.3d | 0d | Contract Price Original Scope [12762 SAR]; Excavator Operator [14.12 h]; Compactor Operator [14.12 h]; Dump Truck Operator [14.12 h]; Water Truck Operator [14.12 h]; Labour [108.96 h]; Soakaway [12] | 12,762.02 |  | RD2 |
| RSZone 1Road 02Storm NetworkA85760 |  | Zone 1 - Road 2 - Storm Network - Soakaway - D.I | 0.7d | 2026-11-12 | 2026-11-14 | RSZone 1Road 02Storm NetworkA85780, RSZone 1Road 02Storm NetworkA85770 |  |  |  | 120.88d | 106.48d | Contract Price Original Scope [36161.6 SAR]; Crane Operator [7 h]; Boom Truck Operator [7 h]; Equipment Operator [7 h]; Labour [308.73 h]; Soakaway [17] | 36,161.55 |  | RD2 |

| ID | WBS | Activity | Duration | Start | Finish | Predecessors | Complete | Planned start | Planned finish | Total float | Free float | Resources | Cost | Actual cost | MODON |
| --- | --- | --- | --- | --- | --- | --- | --- | --- | --- | --- | --- | --- | --- | --- | --- |
|  | 4 | **Gully outfalls** |  | 2026-05-24 | 2026-11-15 |  |  |  |  |  |  |  |  |  |  |
| RSZone 1Road 02Storm NetworkA85790 |  | Zone 1 - Road 2 - Storm Network - Gully outfalls - Excavation | 3d | 2026-05-24 A | 2026-05-26 A | RSZone 1Road 02Storm NetworkA85750 | 100% |  |  |  |  | Contract Price Original Scope [51236.1 SAR]; Excavator Operator [30 h]; Dump Truck Operator [30 h]; Labour [437.43 h]; Gully outfalls [51] | 51,236.05 | 51,236.05 | RD2 |
| RSZone 1Road 02Storm NetworkA85800 |  | Zone 1 - Road 2 - Storm Network - Gully outfalls - Installation | 1.9d | 2026-05-27 A | 2026-05-28 A | RSZone 1Road 02Storm NetworkA85790 | 100% |  |  |  |  | Contract Price Original Scope [204944 SAR]; Crane Operator [7 h]; Equipment Operator [7 h]; Labour [1749.71 h]; Gully outfalls [51] | 204,944.18 | 204,944.18 | RD2 |
| RSZone 1Road 02Storm NetworkA85810 |  | Zone 1 - Road 2 - Storm Network - Gully outfalls - D.I | 0.7d | 2026-11-09 | 2026-11-09 | RSZone 1Road 02Storm NetworkA85800 |  |  |  | 118.7d | 0d | Contract Price Original Scope [34157.4 SAR]; Crane Operator [7 h]; Boom Truck Operator [7 h]; Equipment Operator [7 h]; Labour [291.62 h]; Gully outfalls [51] | 34,157.36 |  | RD2 |
| RSZone 1Road 02Storm NetworkA85820 |  | Zone 1 - Road 2 - Storm Network - Gully outfalls - Inner Isolation | 2d | 2026-11-09 | 2026-11-11 | RSZone 1Road 02Storm NetworkA85810 |  |  |  | 118.7d | 1.12d | Contract Price Original Scope [34157.4 SAR]; Equipment Operator [20 h]; Labour [291.62 h]; Gully outfalls [51] | 34,157.36 |  | RD2 |
| RSZone 1Road 02Storm NetworkA85830 |  | Zone 1 - Road 2 - Storm Network - Gully outfalls - Backfilling | 2d | 2026-11-12 | 2026-11-15 | RSZone 1Road 02Storm NetworkA85820, RSZone 1Road 02Storm NetworkA85780 |  |  |  | 117.58d | 4.18d | Contract Price Original Scope [17078.7 SAR]; Excavator Operator [20 h]; Compactor Operator [20 h]; Dump Truck Operator [20 h]; Water Truck Operator [20 h]; Labour [145.81 h]; Gully outfalls [51] | 17,078.68 |  | RD2 |
|  | 5 | **Catch Basins** |  | 2026-05-25 | 2026-11-22 |  |  |  |  |  |  |  |  |  |  |
| RSZone 1Road 02Storm NetworkA85840 |  | Zone 1 - Road 2 - Storm Network - Catch Basins - Excavation | 3.9d | 2026-05-25 A | 2026-05-28 A | RSZone 1Road 02Storm NetworkA85800 | 100% |  |  |  |  | Contract Price Original Scope [68874.7 SAR]; Excavator Operator [30 h]; Dump Truck Operator [30 h]; Labour [588.02 h]; Catch Basins [20] | 68,874.71 | 68,874.71 | RD2 |
| RSZone 1Road 02Storm NetworkA85850 |  | Zone 1 - Road 2 - Storm Network - Catch Basins - Installation | 2d | 2026-05-31 A | 2026-06-01 A | RSZone 1Road 02Storm NetworkA85840 | 100% |  |  |  |  | Contract Price Original Scope [275499 SAR]; Crane Operator [7 h]; Boom Truck Operator [7 h]; Equipment Operator [7 h]; Labour [2352.07 h]; Catch Basins [20] | 275,498.85 | 275,498.85 | RD2 |
| RSZone 1Road 02Storm NetworkA85860 |  | Zone 1 - Road 2 - Storm Network - Catch Basins - D.I | 5d | 2026-11-09 | 2026-11-14 | RSZone 1Road 02Storm NetworkA85850 |  |  |  | 113.4d | 0d | Contract Price Original Scope [45916.5 SAR]; Crane Operator [7 h]; Boom Truck Operator [7 h]; Equipment Operator [7 h]; Labour [392.01 h]; Catch Basins [20] | 45,916.47 |  | RD2 |
| RSZone 1Road 02Storm NetworkA85870 |  | Zone 1 - Road 2 - Storm Network - Catch Basins - Inner Isolation | 5d | 2026-11-15 | 2026-11-19 | RSZone 1Road 02Storm NetworkA85860 |  |  |  | 113.4d | 0d | Contract Price Original Scope [45916.5 SAR]; Equipment Operator [20 h]; Labour [392.01 h]; Catch Basins [20] | 45,916.47 |  | RD2 |
| RSZone 1Road 02Storm NetworkA85880 |  | Zone 1 - Road 2 - Storm Network - Catch Basins - Backfilling | 2d | 2026-11-21 | 2026-11-22 | RSZone 1Road 02Storm NetworkA85830, RSZone 1Road 02Storm NetworkA85870 |  |  |  | 113.4d | 99d | Contract Price Original Scope [22958.2 SAR]; Excavator Operator [20 h]; Compactor Operator [20 h]; Dump Truck Operator [20 h]; Water Truck Operator [20 h]; Labour [196.01 h]; Catch Basins [20] | 22,958.24 |  | RD2 |
|  | 4 | **Sewage Network** |  | 2025-09-02 | 2027-03-17 |  |  |  |  |  |  |  |  |  |  |
|  | 7 | **HDPE Pipes** |  | 2026-06-01 | 2026-11-25 |  |  |  |  |  |  |  |  |  |  |
|  | 1 | **HDPE Pipes 250 MM** |  | 2026-07-23 | 2026-11-12 |  |  |  |  |  |  |  |  |  |  |
| RSZone 1Road 02Sewage NetworkA86010 |  | Zone 1 - Road 2 - Sewage Network - HDPE Pipes 250 MM - Excavation | 4d | 2026-07-23 A | 2026-07-27 A | Engineering Approval.2, Milestone.1 | 100% | 2026-07-23 | 2026-07-28 |  |  | Contract Price Original Scope [50968 SAR]; Excavator Operator [30 h]; Dump Truck Operator [30 h]; Labour [435.14 h]; HDPE Pipes 250 MM [746] | 50,968.01 | 50,968.01 | RD2 |
| RSZone 1Road 02Sewage NetworkA86020 |  | Zone 1 - Road 2 - Sewage Network - HDPE Pipes 250 MM - Pipe Installation | 6d | 2026-07-28 A | 2026-08-03 A | RSZone 1Road 02Sewage NetworkA86010 | 100% |  |  |  |  | Contract Price Original Scope [220861 SAR]; Excavator Operator [40 h]; Crane Operator [40 h]; Equipment Operator [40 h]; Labour [1885.6 h]; HDPE Pipes 250 MM [746] | 220,861.38 | 220,861.38 | RD2 |
| RSZone 1Road 02Sewage NetworkA86030-old |  | Zone 1 - Road 2 - Sewage Network - HDPE Pipes 250 MM - Test (old) | 42d | 2026-09-13 A | 2026-11-01 A | RSZone 1Road 02Sewage NetworkA86020 | 100% |  |  |  |  | Contract Price Original Scope [7333.73 SAR]; Pump Operator [4.32 h]; Equipment Operator [4.32 h]; Labour [62.61 h]; HDPE Pipes 250 MM [161.01] | 7,333.73 | 7,333.73 | RD2 |
| RSZone 1Road 02Sewage NetworkA86040-old |  | Zone 1 - Road 2 - Sewage Network - HDPE Pipes 250 MM - Backfilling (old) | 41d | 2026-09-14 A | 2026-11-01 A | RSZone 1Road 02Sewage NetworkA86030-old | 100% |  |  |  |  | Contract Price Original Scope [2236.93 SAR]; Excavator Operator [1.32 h]; Compactor Operator [1.32 h]; Dump Truck Operator [1.32 h]; Water Truck Operator [1.32 h]; Labour [19.1 h]; HDPE Pipes 250 MM [49.11] | 2,236.93 | 2,236.93 | RD2 |
| RSZone 1Road 02Sewage NetworkA86030 |  | Zone 1 - Road 2 - Sewage Network - HDPE Pipes 250 MM - Test | 1.57d | 2026-11-09 | 2026-11-10 | RSZone 1Road 02Sewage NetworkA86030-old |  |  |  | 101.96d | 0d | Contract Price Original Scope [26644.9 SAR]; Pump Operator [15.68 h]; Equipment Operator [15.68 h]; Labour [227.48 h]; HDPE Pipes 250 MM [584.99] | 26,644.94 |  | RD2 |
| RSZone 1Road 02Sewage NetworkA86040 |  | Zone 1 - Road 2 - Sewage Network - HDPE Pipes 250 MM - Backfilling | 1.87d | 2026-11-10 | 2026-11-12 | RSZone 1Road 02Sewage NetworkA86040-old, RSZone 1Road 02Sewage NetworkA86030 |  |  |  | 101.96d | 101.36d | Contract Price Original Scope [31741.8 SAR]; Excavator Operator [18.68 h]; Compactor Operator [18.68 h]; Dump Truck Operator [18.68 h]; Water Truck Operator [18.68 h]; Labour [270.99 h]; HDPE Pipes 250 MM [696.89] | 31,741.75 |  | RD2 |
|  | 3 | **HDPE Pipes 280 MM** |  | 2026-09-15 | 2026-11-25 |  |  |  |  |  |  |  |  |  |  |
| RSZone 1Road 02Sewage NetworkA86050-old |  | Zone 1 - Road 2 - Sewage Network - HDPE Pipes 280 MM - Excavation (old) | 40d | 2026-09-15 A | 2026-11-01 A | RSZone 1Road 02Sewage NetworkA86010 | 100% |  |  |  |  | Contract Price Original Scope [1234.61 SAR]; Excavator Operator [7.13 h]; Dump Truck Operator [7.13 h]; Labour [10.54 h]; HDPE Pipes 280 MM [19.02] | 1,234.61 | 1,234.61 | RD2 |
| RSZone 1Road 02Sewage NetworkA86060-old |  | Zone 1 - Road 2 - Sewage Network - HDPE Pipes 280 MM - Pipe Installation (old) | 38d | 2026-09-17 A | 2026-11-01 A | RSZone 1Road 02Sewage NetworkA86050-old | 100% | 2026-09-17 | 2026-11-02 |  |  | Contract Price Original Scope [5343.73 SAR]; Excavator Operator [9.5 h]; Crane Operator [9.5 h]; Equipment Operator [9.5 h]; Labour [45.62 h]; HDPE Pipes 280 MM [19] | 5,343.73 | 5,343.73 | RD2 |
| RSZone 1Road 02Sewage NetworkA86050 |  | Zone 1 - Road 2 - Sewage Network - HDPE Pipes 280 MM - Excavation | 2.29d | 2026-11-09 | 2026-11-11 | RSZone 1Road 02Sewage NetworkA86050-old |  |  |  | 96.06d | 0d | Contract Price Original Scope [3957.68 SAR]; Excavator Operator [22.87 h]; Dump Truck Operator [22.87 h]; Labour [33.79 h]; HDPE Pipes 280 MM [60.98] | 3,957.68 |  | RD2 |
| RSZone 1Road 02Sewage NetworkA86060 |  | Zone 1 - Road 2 - Sewage Network - HDPE Pipes 280 MM - Pipe Installation | 3.05d | 2026-11-11 | 2026-11-15 | RSZone 1Road 02Sewage NetworkA86060-old, RSZone 1Road 02Sewage NetworkA86050 |  |  |  | 96.06d | 5.39d | Contract Price Original Scope [17156.2 SAR]; Excavator Operator [30.5 h]; Crane Operator [30.5 h]; Equipment Operator [30.5 h]; Labour [146.47 h]; HDPE Pipes 280 MM [61] | 17,156.18 |  | RD2 |
| RSZone 1Road 02Sewage NetworkA86070 |  | Zone 1 - Road 2 - Sewage Network - HDPE Pipes 280 MM - Test | 2d | 2026-11-21 | 2026-11-23 | RSZone 1Road 02Sewage NetworkA86060, Pre Test.3, RSZone 1Road 02Sewage NetworkA86050 |  |  |  | 90.67d | 0d | Contract Price Original Scope [3461.52 SAR]; Pump Operator [20 h]; Equipment Operator [20 h]; Labour [29.55 h]; HDPE Pipes 280 MM [80] | 3,461.52 |  | RD2 |
| RSZone 1Road 02Sewage NetworkA86080 |  | Zone 1 - Road 2 - Sewage Network - HDPE Pipes 280 MM - Backfilling | 2d | 2026-11-23 | 2026-11-25 | RSZone 1Road 02Sewage NetworkA86070 |  |  |  | 90.67d | 90.07d | Contract Price Original Scope [3461.52 SAR]; Excavator Operator [20 h]; Compactor Operator [20 h]; Dump Truck Operator [20 h]; Water Truck Operator [20 h]; Labour [29.55 h]; HDPE Pipes 280 MM [80] | 3,461.52 |  | RD2 |

| ID | WBS | Activity | Duration | Start | Finish | Predecessors | Complete | Planned start | Planned finish | Total float | Free float | Resources | Cost | Actual cost | MODON |
| --- | --- | --- | --- | --- | --- | --- | --- | --- | --- | --- | --- | --- | --- | --- | --- |
|  | 2 | **HDPE Pipes 315 MM** |  | 2026-06-01 | 2026-11-12 |  |  |  |  |  |  |  |  |  |  |
| RSZone 1Road 02Sewage NetworkA86090 |  | Zone 1 - Road 2 - Sewage Network - HDPE Pipes 315 MM - Excavation | 6d | 2026-06-01 A | 2026-06-07 A | RSZone 1Road 02Sewage NetworkA86020 | 100% |  |  |  |  | Contract Price Original Scope [3930.01 SAR]; Excavator Operator [30 h]; Dump Truck Operator [30 h]; Labour [33.55 h]; HDPE Pipes 315 MM [30] | 3,930.01 | 3,930.01 | RD2 |
| RSZone 1Road 02Sewage NetworkA86100 |  | Zone 1 - Road 2 - Sewage Network - HDPE Pipes 315 MM - Pipe Installation | 7d | 2026-06-08 A | 2026-06-15 A | RSZone 1Road 02Sewage NetworkA86090 | 100% |  |  |  |  | Contract Price Original Scope [17030.1 SAR]; Excavator Operator [40 h]; Crane Operator [40 h]; Equipment Operator [40 h]; Labour [145.39 h]; HDPE Pipes 315 MM [30] | 17,030.06 | 17,030.06 | RD2 |
| RSZone 1Road 02Sewage NetworkA86110 |  | Zone 1 - Road 2 - Sewage Network - HDPE Pipes 315 MM - Test | 2d | 2026-11-09 | 2026-11-10 | RSZone 1Road 02Sewage NetworkA86100 |  |  |  | 53.5d | 0d | Contract Price Original Scope [2620.01 SAR]; Pump Operator [20 h]; Equipment Operator [20 h]; Labour [22.37 h]; HDPE Pipes 315 MM [30] | 2,620.01 |  | RD2 |
| RSZone 1Road 02Sewage NetworkA86120 |  | Zone 1 - Road 2 - Sewage Network - HDPE Pipes 315 MM - Backfilling | 2d | 2026-11-11 | 2026-11-12 | RSZone 1Road 02Sewage NetworkA86110 |  |  |  | 53.5d | 0d | Contract Price Original Scope [2620.01 SAR]; Excavator Operator [20 h]; Compactor Operator [20 h]; Dump Truck Operator [20 h]; Water Truck Operator [20 h]; Labour [22.37 h]; HDPE Pipes 315 MM [30] | 2,620.01 |  | RD2 |
|  | 8 | **Valves** |  | 2026-11-14 | 2027-01-07 |  |  |  |  |  |  |  |  |  |  |
|  | 4 | **AIR RELEASE VALVE** |  | 2026-11-14 | 2026-12-01 |  |  |  |  |  |  |  |  |  |  |
| RSZone 1Road 02Sewage NetworkA20210 |  | Zone 1 - Road 2 - Sewage Network - AIR RELEASE VALVE - Surface Box | 5.9d | 2026-11-14 | 2026-11-19 | RSZone 1Road 02Sewage NetworkA86120 |  |  |  | 53.5d | 0d | Labour; Air Release Valves [16] |  |  | RD2 |
| RSZone 1Road 02Sewage NetworkA20200 |  | Zone 1 - Road 2 - Sewage Network - AIR RELEASE VALVE - Installation | 6d | 2026-11-19 | 2026-11-26 | RSZone 1Road 02Sewage NetworkA20210 |  |  |  | 53.5d | 0d | Contract Price Original Scope [129126 SAR]; Labour [1102.41 h]; Air Release Valves [16] | 129,126.35 |  | RD2 |
| RSZone 1Road 02Sewage NetworkA20220 |  | Zone 1 - Road 2 - Sewage Network - AIR RELEASE VALVE - Test | 4d | 2026-11-26 | 2026-12-01 | RSZone 1Road 02Sewage NetworkA20200 |  |  |  | 53.5d | 0d | Contract Price Original Scope [32281.6 SAR]; Pump Operator [20 h]; Equipment Operator [20 h]; Labour [275.6 h]; Air Release Valves [16] | 32,281.59 |  | RD2 |
|  | 3 | **ISOLATION VALVE** |  | 2026-12-01 | 2026-12-20 |  |  |  |  |  |  |  |  |  |  |
| RSZone 1Road 02Sewage NetworkA20250 |  | Zone 1 - Road 2 - Sewage Network - ISOLATION VALVE - Installation | 6d | 2026-12-01 | 2026-12-08 | RSZone 1Road 02Sewage NetworkA20220 |  |  |  | 53.5d | 0d | Contract Price Original Scope [39237.4 SAR]; Labour [334.99 h]; Isolation Valves [6] | 39,237.4 |  | RD2 |
| RSZone 1Road 02Sewage NetworkA20260 |  | Zone 1 - Road 2 - Sewage Network - ISOLATION VALVE - Surface Box | 6d | 2026-12-08 | 2026-12-15 | RSZone 1Road 02Sewage NetworkA20250 |  |  |  | 53.5d | 0d | Labour; Isolation Valves [6] |  |  | RD2 |
| RSZone 1Road 02Sewage NetworkA20270 |  | Zone 1 - Road 2 - Sewage Network - ISOLATION VALVE - Test | 4d | 2026-12-15 | 2026-12-20 | RSZone 1Road 02Sewage NetworkA20260 |  |  |  | 53.5d | 0d | Contract Price Original Scope [9809.35 SAR]; Pump Operator [20 h]; Equipment Operator [20 h]; Labour [83.75 h]; Isolation Valves [6] | 9,809.35 |  | RD2 |
|  | 2 | **WASHOUT** |  | 2026-12-20 | 2027-01-07 |  |  |  |  |  |  |  |  |  |  |
| RSZone 1Road 02Sewage NetworkA20150 |  | Zone 1 - Road 2 - Sewage Network - WASHOUT - Installation | 6d | 2026-12-20 | 2026-12-27 | RSZone 1Road 02Sewage NetworkA20270 |  |  |  | 53.5d | 0d | Contract Price Original Scope [30482.1 SAR]; Labour [260.24 h]; Washout Valves [10] | 30,482.13 |  | RD2 |
| RSZone 1Road 02Sewage NetworkA20160 |  | Zone 1 - Road 2 - Sewage Network - WASHOUT - Surface Box | 6d | 2026-12-27 | 2027-01-03 | RSZone 1Road 02Sewage NetworkA20150 |  |  |  | 53.5d | 0d | Labour; Washout Valves [10] |  |  | RD2 |
| RSZone 1Road 02Sewage NetworkA20170 |  | Zone 1 - Road 2 - Sewage Network - WASHOUT - Test | 4d | 2027-01-03 | 2027-01-07 | RSZone 1Road 02Sewage NetworkA20160 |  |  |  | 53.5d | 52.9d | Contract Price Original Scope [7620.53 SAR]; Pump Operator [20 h]; Equipment Operator [20 h]; Labour [65.06 h]; Washout Valves [10] | 7,620.53 |  | RD2 |
|  | 9 | **Chamber Valves** |  | 2025-09-02 | 2026-12-02 |  |  |  |  |  |  |  |  |  |  |
|  | 4 | **AIR RELEASE VALVE Chamber** |  | 2025-09-02 | 2026-11-21 |  |  |  |  |  |  |  |  |  |  |
| RSZone 1Road 02Sewage NetworkA20370 |  | Zone 1 - Road 2 - Sewage Network - AIR RELEASE VALVE Chamber - Excavation | 3d | 2025-09-02 A | 2025-09-04 A | RSZone 1Road 02Sewage NetworkA86100 | 100% |  |  |  |  | Labour; Air Release Chambers [4] |  |  | RD2 |
| RSZone 1Road 02Sewage NetworkA20380 |  | Zone 1 - Road 2 - Sewage Network - AIR RELEASE VALVE Chamber - Footings | 5d | 2025-09-07 A | 2025-09-11 A | RSZone 1Road 02Sewage NetworkA20370 | 100% |  |  |  |  | Labour; Air Release Chambers [4] |  |  | RD2 |
| RSZone 1Road 02Sewage NetworkA20390 |  | Zone 1 - Road 2 - Sewage Network - AIR RELEASE VALVE Chamber - Walls | 7d | 2025-09-14 A | 2025-09-22 A | RSZone 1Road 02Sewage NetworkA20380 | 100% | 2025-09-14 | 2025-09-21 |  |  | Labour; Air Release Chambers [4] |  |  | RD2 |
| RSZone 1Road 02Sewage NetworkA20400-old |  | Zone 1 - Road 2 - Sewage Network - AIR RELEASE VALVE Chamber - Slab (old) | 156d | 2026-05-03 A | 2026-11-01 A | RSZone 1Road 02Sewage NetworkA20390 | 100% |  |  |  |  | Labour; Air Release Chambers [2] |  |  | RD2 |
| RSZone 1Road 02Sewage NetworkA20430-old |  | Zone 1 - Road 2 - Sewage Network - AIR RELEASE VALVE Chamber - External Isolation (old) | 155d | 2026-05-04 A | 2026-11-01 A | RSZone 1Road 02Sewage NetworkA20400-old | 100% |  |  |  |  | Labour; Air Release Chambers [3] |  |  | RD2 |
| RSZone 1Road 02Sewage NetworkA20400 |  | Zone 1 - Road 2 - Sewage Network - AIR RELEASE VALVE Chamber - Slab | 1.5d | 2026-11-09 | 2026-11-10 | RSZone 1Road 02Sewage NetworkA20400-old |  |  |  | 84.8d | 0d | Labour; Air Release Chambers [2] |  |  | RD2 |
| RSZone 1Road 02Sewage NetworkA20430 |  | Zone 1 - Road 2 - Sewage Network - AIR RELEASE VALVE Chamber - External Isolation | 1.1d | 2026-11-10 | 2026-11-11 | RSZone 1Road 02Sewage NetworkA20430-old, RSZone 1Road 02Sewage NetworkA20400 |  |  |  | 84.8d | 0d | Labour; Air Release Chambers [1] |  |  | RD2 |
| RSZone 1Road 02Sewage NetworkA20410 |  | Zone 1 - Road 2 - Sewage Network - AIR RELEASE VALVE Chamber - D.I Cover | 3d | 2026-11-11 | 2026-11-15 | RSZone 1Road 02Sewage NetworkA20430 |  |  |  | 94.8d | 0d | Labour; Air Release Chambers [5] |  |  | RD2 |
| RSZone 1Road 02Sewage NetworkA20420 |  | Zone 1 - Road 2 - Sewage Network - AIR RELEASE VALVE Chamber - Internal Isolation | 3d | 2026-11-15 | 2026-11-18 | RSZone 1Road 02Sewage NetworkA20410, RSZone 1Road 02Sewage NetworkA20400 |  |  |  | 94.8d | 0d | Labour; Air Release Chambers [5] |  |  | RD2 |
| RSZone 1Road 02Sewage NetworkA20440 |  | Zone 1 - Road 2 - Sewage Network - AIR RELEASE VALVE Chamber - Backfilling | 2d | 2026-11-18 | 2026-11-21 | RSZone 1Road 02Sewage NetworkA20420 |  |  |  | 94.8d | 94.2d | Excavator Operator [20 h]; Compactor Operator [20 h]; Dump Truck Operator [20 h]; Water Truck Operator [20 h]; Labour; Air Release Chambers [4] |  |  | RD2 |

| ID | WBS | Activity | Duration | Start | Finish | Predecessors | Complete | Remaining | Planned start | Planned finish | Total float | Free float | Resources | Cost | Actual cost | MODON |
| --- | --- | --- | --- | --- | --- | --- | --- | --- | --- | --- | --- | --- | --- | --- | --- | --- |
|  | 3 | **ISOLATION VALVE Chamber** |  | 2026-05-03 | 2026-11-28 |  |  |  |  |  |  |  |  |  |  |  |
| RSZone 1Road 02Sewage NetworkA20450-old |  | Zone 1 - Road 2 - Sewage Network - ISOLATION VALVE Chamber - Excavation (old) | 156d | 2026-05-03 A | 2026-11-01 A | RSZone 1Road 02Sewage NetworkA20430-old | 100% |  |  |  |  |  | Contract Price Original Scope [2046.39 SAR]; Labour [17.47 h]; Isolation Valve Chambers [2] | 2,046.39 | 2,046.39 | RD2 |
| RSZone 1Road 02Sewage NetworkA20460-old |  | Zone 1 - Road 2 - Sewage Network - ISOLATION VALVE Chamber - Footings (old) | 154d | 2026-05-05 A | 2026-11-01 A | RSZone 1Road 02Sewage NetworkA20450-old | 100% |  |  |  |  |  | Contract Price Original Scope [6139.17 SAR]; Labour [52.41 h]; Isolation Valve Chambers [2] | 6,139.17 | 6,139.17 | RD2 |
| RSZone 1Road 02Sewage NetworkA20470-old |  | Zone 1 - Road 2 - Sewage Network - ISOLATION VALVE Chamber - Walls (old) | 153d | 2026-05-06 A | 2026-11-01 A | RSZone 1Road 02Sewage NetworkA20460-old | 100% |  |  |  |  |  | Contract Price Original Scope [8185.55 SAR]; Labour [69.88 h]; Isolation Valve Chambers [2] | 8,185.55 | 8,185.55 | RD2 |
| RSZone 1Road 02Sewage NetworkA20510-old |  | Zone 1 - Road 2 - Sewage Network - ISOLATION VALVE Chamber - External Isolation (old) | 152d | 2026-05-07 A | 2026-11-01 A | RSZone 1Road 02Sewage NetworkA20470-old | 100% |  | 2026-05-07 | 2026-11-02 |  |  | Contract Price Original Scope [1023.19 SAR]; Labour [8.74 h]; Isolation Valve Chambers [1] | 1,023.19 | 1,023.19 | RD2 |
| RSZone 1Road 02Sewage NetworkA20510 |  | Zone 1 - Road 2 - Sewage Network - ISOLATION VALVE Chamber - External Isolation | 2d | 2026-11-03 A | 2026-11-15 | RSZone 1Road 02Sewage NetworkA20510-old, RSZone 1Road 02Sewage NetworkA20470 FF | 67% | 0.67d | 2026-11-08 | 2026-11-10 | 88.8d | 0d | Contract Price Original Scope [2046.39 SAR]; Labour [17.47 h]; Isolation Valve Chambers [2] | 2,046.39 | 1,364.26 | RD2 |
| RSZone 1Road 02Sewage NetworkA20450 |  | Zone 1 - Road 2 - Sewage Network - ISOLATION VALVE Chamber - Excavation | 1d | 2026-11-11 | 2026-11-12 | RSZone 1Road 02Sewage NetworkA20450-old, RSZone 1Road 02Sewage NetworkA20430 |  |  |  |  | 84.8d | 0d | Contract Price Original Scope [1023.19 SAR]; Labour [8.74 h]; Isolation Valve Chambers [1] | 1,023.19 |  | RD2 |
| RSZone 1Road 02Sewage NetworkA20460 |  | Zone 1 - Road 2 - Sewage Network - ISOLATION VALVE Chamber - Footings | 1d | 2026-11-12 | 2026-11-14 | RSZone 1Road 02Sewage NetworkA20460-old, RSZone 1Road 02Sewage NetworkA20450 |  |  |  |  | 88.8d | 0d | Contract Price Original Scope [3069.58 SAR]; Labour [26.21 h]; Isolation Valve Chambers [1] | 3,069.58 |  | RD2 |
| RSZone 1Road 02Sewage NetworkA20470 |  | Zone 1 - Road 2 - Sewage Network - ISOLATION VALVE Chamber - Walls | 1d | 2026-11-14 | 2026-11-15 | RSZone 1Road 02Sewage NetworkA20470-old, RSZone 1Road 02Sewage NetworkA20460 |  |  |  |  | 88.8d | 0d | Contract Price Original Scope [4092.78 SAR]; Labour [34.94 h]; Isolation Valve Chambers [1] | 4,092.78 |  | RD2 |
| RSZone 1Road 02Sewage NetworkA20480 |  | Zone 1 - Road 2 - Sewage Network - ISOLATION VALVE Chamber - Slab | 3d | 2026-11-15 | 2026-11-18 | RSZone 1Road 02Sewage NetworkA20510, RSZone 1Road 02Sewage NetworkA20460, RSZone 1Road 02Sewage NetworkA20470 |  |  |  |  | 88.8d | 0d | Contract Price Original Scope [21487.1 SAR]; Labour [183.45 h]; Isolation Valve Chambers [3] | 21,487.08 |  | RD2 |
| RSZone 1Road 02Sewage NetworkA20490 |  | Zone 1 - Road 2 - Sewage Network - ISOLATION VALVE Chamber - D.I Cover | 3d | 2026-11-18 | 2026-11-22 | RSZone 1Road 02Sewage NetworkA20480 |  |  |  |  | 88.8d | 0d | Contract Price Original Scope [8185.55 SAR]; Labour [69.88 h]; Isolation Valve Chambers [4] | 8,185.55 |  | RD2 |
| RSZone 1Road 02Sewage NetworkA20500 |  | Zone 1 - Road 2 - Sewage Network - ISOLATION VALVE Chamber - Internal Isolation | 3d | 2026-11-22 | 2026-11-25 | RSZone 1Road 02Sewage NetworkA20490 |  |  |  |  | 88.8d | 0d | Contract Price Original Scope [3069.58 SAR]; Labour [26.21 h]; Isolation Valve Chambers [3] | 3,069.58 |  | RD2 |
| RSZone 1Road 02Sewage NetworkA20520 |  | Zone 1 - Road 2 - Sewage Network - ISOLATION VALVE Chamber - Backfilling | 2d | 2026-11-25 | 2026-11-28 | RSZone 1Road 02Sewage NetworkA20500 |  |  |  |  | 88.8d | 88.2d | Contract Price Original Scope [3069.58 SAR]; Excavator Operator [20 h]; Compactor Operator [20 h]; Dump Truck Operator [20 h]; Water Truck Operator [20 h]; Labour [26.21 h]; Isolation Valve Chambers [3] | 3,069.58 |  | RD2 |
|  | 2 | **WASHOUT Chamber** |  | 2026-05-03 | 2026-12-02 |  |  |  |  |  |  |  |  |  |  |  |
| RSZone 1Road 02Sewage NetworkA20290-old |  | Zone 1 - Road 2 - Sewage Network - WASHOUT Chamber - Excavation (old) | 156d | 2026-05-03 A | 2026-11-01 A | RSZone 1Road 02Sewage NetworkA20450-old | 100% |  |  |  |  |  | Contract Price Original Scope [11579.1 SAR]; Labour [98.86 h]; Washout / Drain Chambers [3] | 11,579.15 | 11,579.15 | RD2 |
| RSZone 1Road 02Sewage NetworkA20300-old |  | Zone 1 - Road 2 - Sewage Network - WASHOUT Chamber - Footings (old) | 154d | 2026-05-05 A | 2026-11-01 A | RSZone 1Road 02Sewage NetworkA20290-old | 100% |  |  |  |  |  | Contract Price Original Scope [23158.3 SAR]; Labour [197.71 h]; Washout / Drain Chambers [2] | 23,158.29 | 23,158.29 | RD2 |
| RSZone 1Road 02Sewage NetworkA20290 |  | Zone 1 - Road 2 - Sewage Network - WASHOUT Chamber - Excavation | 1d | 2026-11-02 A | 2026-11-05 A | RSZone 1Road 02Sewage NetworkA20290-old, RSZone 1Road 02Sewage NetworkA20450-old | 100% |  | 2026-11-05 | 2026-11-07 |  |  | Contract Price Original Scope [3859.72 SAR]; Labour [32.95 h]; Washout / Drain Chambers [1] | 3,859.72 | 3,859.72 | RD2 |
| RSZone 1Road 02Sewage NetworkA20300 |  | Zone 1 - Road 2 - Sewage Network - WASHOUT Chamber - Footings | 1.5d | 2026-11-03 A | 2026-11-09 | RSZone 1Road 02Sewage NetworkA20300-old, RSZone 1Road 02Sewage NetworkA20290 | 75% | 0.38d | 2026-11-07 | 2026-11-09 | 88.03d | 3.23d | Contract Price Original Scope [23158.3 SAR]; Labour [197.71 h]; Washout / Drain Chambers [2] | 23,158.29 | 17,368.72 | RD2 |
| RSZone 1Road 02Sewage NetworkA20320 |  | Zone 1 - Road 2 - Sewage Network - WASHOUT Chamber - Slab | 3d | 2026-11-12 | 2026-11-16 | RSZone 1Road 02Sewage NetworkA20300, RSZone 1Road 02Sewage NetworkA20290, RSZone 1Road 02Sewage NetworkA20450 |  |  |  |  | 84.8d | 0d | Contract Price Original Scope [108072 SAR]; Labour [922.66 h]; Washout / Drain Chambers [4] | 108,072.04 |  | RD2 |
| RSZone 1Road 02Sewage NetworkA20310 |  | Zone 1 - Road 2 - Sewage Network - WASHOUT Chamber - Walls | 3d | 2026-11-16 | 2026-11-19 | RSZone 1Road 02Sewage NetworkA20320 |  |  |  |  | 84.8d | 0d | Contract Price Original Scope [61755.4 SAR]; Labour [527.24 h]; Washout / Drain Chambers [4] | 61,755.45 |  | RD2 |
| RSZone 1Road 02Sewage NetworkA20340 |  | Zone 1 - Road 2 - Sewage Network - WASHOUT Chamber - Internal Isolation | 3d | 2026-11-19 | 2026-11-23 | RSZone 1Road 02Sewage NetworkA20310 |  |  |  |  | 84.8d | 0d | Contract Price Original Scope [23158.3 SAR]; Labour [197.71 h]; Washout / Drain Chambers [6] | 23,158.29 |  | RD2 |
| RSZone 1Road 02Sewage NetworkA20330 |  | Zone 1 - Road 2 - Sewage Network - WASHOUT Chamber - D.I Cover | 3d | 2026-11-23 | 2026-11-26 | RSZone 1Road 02Sewage NetworkA20340 |  |  |  |  | 84.8d | 0d | Contract Price Original Scope [46316.6 SAR]; Labour [395.43 h]; Washout / Drain Chambers [6] | 46,316.59 |  | RD2 |
| RSZone 1Road 02Sewage NetworkA20350 |  | Zone 1 - Road 2 - Sewage Network - WASHOUT Chamber - External Isolation | 3d | 2026-11-26 | 2026-11-30 | RSZone 1Road 02Sewage NetworkA20330 |  |  |  |  | 84.8d | 0d | Contract Price Original Scope [15438.9 SAR]; Labour [131.81 h]; Washout / Drain Chambers [4] | 15,438.86 |  | RD2 |
| RSZone 1Road 02Sewage NetworkA20360 |  | Zone 1 - Road 2 - Sewage Network - WASHOUT Chamber - Backfilling | 2d | 2026-11-30 | 2026-12-02 | RSZone 1Road 02Sewage NetworkA20350 |  |  |  |  | 84.8d | 84.2d | Contract Price Original Scope [15438.9 SAR]; Excavator Operator [20 h]; Compactor Operator [20 h]; Dump Truck Operator [20 h]; Water Truck Operator [20 h]; Labour [131.81 h]; Washout / Drain Chambers [4] | 15,438.86 |  | RD2 |

| ID | WBS | Activity | Duration | Start | Finish | Predecessors | Complete | Planned start | Planned finish | Total float | Free float | Resources | Cost | Actual cost | MODON |
| --- | --- | --- | --- | --- | --- | --- | --- | --- | --- | --- | --- | --- | --- | --- | --- |
|  | 2 | **Pump Station (PS02)** |  | 2025-11-04 | 2027-02-28 |  |  |  |  |  |  |  |  |  |  |
| RSZone 1Road 02Sewage NetworkA34380 |  | Zone 1 - Road 2 - Sewage Network - Pump Station (PS02) - Fence & Gates | 2d | 2025-11-04 A | 2025-11-05 A | RSZone 1Road 02Sewage NetworkA20390 | 100% |  |  |  |  | Contract Price Original Scope [522915 SAR]; Crane Operator [50 h]; Boom Truck Operator [50 h]; Equipment Operator [50 h]; Labour [4464.38 h]; Pump Station PS02 - Fence and Gates [1] | 522,914.79 | 522,914.79 | RD2 |
| RSZone 1Road 02Sewage NetworkA34340-old |  | Zone 1 - Road 2 - Sewage Network - Pump Station (PS02) - Pumps (old) | 141d | 2026-05-20 A | 2026-11-01 A | Procurment.Dos.6, RSZone 1Road 02Sewage NetworkA34390-old | 100% |  |  |  |  | Contract Price Original Scope [13739.2 SAR]; Crane Operator [0.7 h]; Boom Truck Operator [0.7 h]; Equipment Operator [0.7 h]; Labour [117.3 h]; Pump Station PS02 - Pumps [0.01] | 13,739.2 | 13,739.2 | RD2 |
| RSZone 1Road 02Sewage NetworkA34350-old |  | Zone 1 - Road 2 - Sewage Network - Pump Station (PS02) - Control System (old) | 138d | 2026-05-24 A | 2026-11-01 A | Procurment.Po.2, Procurment.Po.6, RSZone 1Road 02Sewage NetworkA34340-old | 100% |  |  |  |  | Contract Price Original Scope [213906 SAR]; Crane Operator [30 h]; Boom Truck Operator [30 h]; Equipment Operator [30 h]; Labour [1826.22 h]; Pump Station PS02 - Control System [0.6] | 213,905.72 | 213,905.72 | RD2 |
| RSZone 1Road 02Sewage NetworkA34360-old |  | Zone 1 - Road 2 - Sewage Network - Pump Station (PS02) - In-line Booste Station (old) | 137d | 2026-05-25 A | 2026-11-01 A | RSZone 1Road 02Sewage NetworkA34410-old | 100% |  |  |  |  | Contract Price Original Scope [26012.2 SAR]; Crane Operator [0.2 h]; Boom Truck Operator [0.2 h]; Equipment Operator [0.2 h]; Labour [222.08 h]; Pump Station PS02 - In-line Booste Station [0.01] | 26,012.25 | 26,012.25 | RD2 |
| RSZone 1Road 02Sewage NetworkA34370-old |  | Zone 1 - Road 2 - Sewage Network - Pump Station (PS02) - Valves (old) | 136d | 2026-05-26 A | 2026-11-01 A | RSZone 1Road 02Sewage NetworkA34360-old | 100% |  |  |  |  | Contract Price Original Scope [2175.58 SAR]; Excavator Operator [2 h]; Crane Operator [2 h]; Equipment Operator [2 h]; Labour [18.57 h]; Pump Station PS02 - Valves [0.1] | 2,175.58 | 2,175.58 | RD2 |
| RSZone 1Road 02Sewage NetworkA34390-old |  | Zone 1 - Road 2 - Sewage Network - Pump Station (PS02) - Concrete Element Works (old) | 135d | 2026-05-27 A | 2026-11-01 A | RSZone 1Road 02Sewage NetworkA34370-old | 100% |  |  |  |  | Contract Price Original Scope [102536 SAR]; Crane Operator [10 h]; Pump Operator [10 h]; Equipment Operator [10 h]; Labour [875.4 h]; Pump Station PS02 - Concrete Element Works [0.2] | 102,536.13 | 102,536.13 | RD2 |
| RSZone 1Road 02Sewage NetworkA34410-old |  | Zone 1 - Road 2 - Sewage Network - Pump Station (PS02) - Light Works (old) | 134d | 2026-05-28 A | 2026-11-01 A | RSZone 1Road 02Sewage NetworkA34420-old | 100% | 2026-05-28 | 2026-11-02 |  |  | Contract Price Original Scope [189180 SAR]; Crane Operator [7.2 h]; Boom Truck Operator [7.2 h]; Equipment Operator [7.2 h]; Labour [1615.12 h]; Pump Station PS02 - Light Works [0.6] | 189,180.13 | 189,180.13 | RD2 |
| RSZone 1Road 02Sewage NetworkA34420-old |  | Zone 1 - Road 2 - Sewage Network - Pump Station (PS02) - UPVC Ducts (old) | 132d | 2026-05-31 A | 2026-11-01 A | RSZone 1Road 02Sewage NetworkA34380 | 100% |  |  |  |  | Contract Price Original Scope [1296.25 SAR]; Crane Operator [8 h]; Boom Truck Operator [8 h]; Equipment Operator [8 h]; Labour [11.07 h]; Pump Station PS02 - UPVC Ducts [0.5] | 1,296.25 | 1,296.25 | RD2 |
| RSZone 1Road 02Sewage NetworkA34420 |  | Zone 1 - Road 2 - Sewage Network - Pump Station (PS02) - UPVC Ducts | 1d | 2026-11-09 | 2026-11-09 | RSZone 1Road 02Sewage NetworkA34420-old |  |  |  | 67.89d | 0d | Contract Price Original Scope [1296.25 SAR]; Crane Operator [8 h]; Boom Truck Operator [8 h]; Equipment Operator [8 h]; Labour [11.07 h]; Pump Station PS02 - UPVC Ducts [0.5] | 1,296.25 |  | RD2 |
| RSZone 1Road 02Sewage NetworkA34410 |  | Zone 1 - Road 2 - Sewage Network - Pump Station (PS02) - Light Works | 1d | 2026-11-10 | 2026-11-10 | RSZone 1Road 02Sewage NetworkA34410-old, RSZone 1Road 02Sewage NetworkA34420 |  |  |  | 67.89d | 0d | Contract Price Original Scope [126120 SAR]; Crane Operator [4.8 h]; Boom Truck Operator [4.8 h]; Equipment Operator [4.8 h]; Labour [1076.75 h]; Pump Station PS02 - Light Works [0.4] | 126,120.08 |  | RD2 |
| RSZone 1Road 02Sewage NetworkA34360 |  | Zone 1 - Road 2 - Sewage Network - Pump Station (PS02) - In-line Booste Station | 1.98d | 2026-11-11 | 2026-11-12 | RSZone 1Road 02Sewage NetworkA34360-old, RSZone 1Road 02Sewage NetworkA34410 |  |  |  | 67.89d | 0d | Contract Price Original Scope [2575212 SAR]; Crane Operator [19.8 h]; Boom Truck Operator [19.8 h]; Equipment Operator [19.8 h]; Labour [21985.8 h]; Pump Station PS02 - In-line Booste Station [0.99] | 2,575,212.47 |  | RD2 |
| RSZone 1Road 02Sewage NetworkA34370 |  | Zone 1 - Road 2 - Sewage Network - Pump Station (PS02) - Valves | 1.8d | 2026-11-12 | 2026-11-15 | RSZone 1Road 02Sewage NetworkA34370-old, RSZone 1Road 02Sewage NetworkA34360 |  |  |  | 67.89d | 0d | Contract Price Original Scope [19580.2 SAR]; Excavator Operator [18 h]; Crane Operator [18 h]; Equipment Operator [18 h]; Labour [167.17 h]; Pump Station PS02 - Valves [0.9] | 19,580.2 |  | RD2 |
| RSZone 1Road 02Sewage NetworkA34390 |  | Zone 1 - Road 2 - Sewage Network - Pump Station (PS02) - Concrete Element Works | 4d | 2026-11-15 | 2026-11-19 | RSZone 1Road 02Sewage NetworkA34390-old, RSZone 1Road 02Sewage NetworkA34370 |  |  |  | 67.89d | 0d | Contract Price Original Scope [410145 SAR]; Crane Operator [40 h]; Pump Operator [40 h]; Equipment Operator [40 h]; Labour [3501.6 h]; Pump Station PS02 - Concrete Element Works [0.8] | 410,144.52 |  | RD2 |
| RSZone 1Road 02Sewage NetworkA34340 |  | Zone 1 - Road 2 - Sewage Network - Pump Station (PS02) - Pumps | 6.93d | 2027-01-27 | 2027-02-03 | RSZone 1Road 02Sewage NetworkA34340-old, RSZone 1Road 02Sewage NetworkA34390, Procurment.Dos.14 |  |  |  | 9.67d | 0d | Contract Price Original Scope [1360181 SAR]; Crane Operator [69.3 h]; Boom Truck Operator [69.3 h]; Equipment Operator [69.3 h]; Labour [11612.5 h]; Pump Station PS02 - Pumps [0.99] | 1,360,180.54 |  | RD2 |
| RSZone 1Road 02Sewage NetworkA34350 |  | Zone 1 - Road 2 - Sewage Network - Pump Station (PS02) - Control System | 2d | 2027-02-14 | 2027-02-16 | RSZone 1Road 02Sewage NetworkA34350-old, Procurment.Dos.1, Procurment.Dos.5, RSZone 1Road 02Sewage NetworkA34340 |  |  |  | 0.6d | 0d | Contract Price Original Scope [142604 SAR]; Crane Operator [20 h]; Boom Truck Operator [20 h]; Equipment Operator [20 h]; Labour [1217.48 h]; Pump Station PS02 - Control System [0.4] | 142,603.81 |  | RD2 |
| RSZone 1Road 02Sewage NetworkA34400 |  | Zone 1 - Road 2 - Sewage Network - Pump Station (PS02) - MCC | 3.1d | 2027-02-16 | 2027-02-22 | RSZone 1Road 02Sewage NetworkA34350, RSZone 1Road 02Sewage NetworkA34340, RSZone 1Road 02Sewage NetworkA34360, RSZone 1Road 02Sewage NetworkA34370, RSZone 1Road 02Sewage NetworkA34390, RSZone 1Road 02Sewage NetworkA34410, RSZone 1Road 02Sewage NetworkA34420 |  |  |  | 0.6d | 0d | Contract Price Original Scope [165532 SAR]; Crane Operator [31 h]; Boom Truck Operator [31 h]; Equipment Operator [31 h]; Labour [1413.23 h]; Pump Station PS02 - MCC [1] | 165,532.5 |  | RD2 |
| RSZone 1Road 02Sewage NetworkA34430 |  | Zone 1 - Road 2 - Sewage Network - Pump Station (PS02) - Earthing | 1.6d | 2027-02-22 | 2027-02-25 | RSZone 1Road 02Sewage NetworkA34400 |  |  |  | 1.7d | 0d | Contract Price Original Scope [16144.2 SAR]; Crane Operator [16 h]; Boom Truck Operator [16 h]; Equipment Operator [16 h]; Labour [137.83 h]; Pump Station PS02 - Earthing [1] | 16,144.22 |  | RD2 |
| RSZone 1Road 02Sewage NetworkA34440 |  | Zone 1 - Road 2 - Sewage Network - Pump Station (PS02) - Interlock Paving | 1.3d | 2027-02-25 | 2027-02-28 | RSZone 1Road 02Sewage NetworkA34430 |  |  |  | 3.4d | 2.7d | Contract Price Original Scope [61675.2 SAR]; Compactor Operator [13 h]; Equipment Operator [13 h]; Water Truck Operator [13 h]; Labour [526.55 h]; Pump Station PS02 - Interlock Paving [1] | 61,675.2 |  | RD2 |
|  | 3 | **Pump Station (PS03)** |  | 2025-11-03 | 2027-03-11 |  |  |  |  |  |  |  |  |  |  |
| RSZone 1Road 02Sewage NetworkA34490 |  | Zone 1 - Road 2 - Sewage Network - Pump Station (PS03) - Fence & Gates | 3d | 2025-11-03 A | 2025-11-05 A | RSZone 1Road 02Sewage NetworkA34380, RSZone 1Road 02Sewage NetworkA34380 FF | 100% |  |  |  |  | Contract Price Original Scope [424129 SAR]; Crane Operator [31 h]; Boom Truck Operator [31 h]; Equipment Operator [31 h]; Labour [3620.99 h]; Pump Station PS03 - Fence and Gates [1] | 424,128.54 | 424,128.54 | RD2 |
| RSZone 1Road 02Sewage NetworkA34450-old |  | Zone 1 - Road 2 - Sewage Network - Pump Station (PS03) - Pumps (old) | 141d | 2026-05-20 A | 2026-11-01 A | Procurment.Dos.2-old, RSZone 1Road 02Sewage NetworkA34340-old, RSZone 1Road 02Sewage NetworkA34500-old | 100% |  |  |  |  | Contract Price Original Scope [30531.5 SAR]; Crane Operator [0.08 h]; Boom Truck Operator [0.08 h]; Equipment Operator [0.08 h]; Labour [260.66 h]; Pump Station PS03 - Pumps [0.01] | 30,531.54 | 30,531.54 | RD2 |
| RSZone 1Road 02Sewage NetworkA34460-old |  | Zone 1 - Road 2 - Sewage Network - Pump Station (PS03) - Control System (old) | 138d | 2026-05-24 A | 2026-11-01 A | RSZone 1Road 02Sewage NetworkA34350-old, RSZone 1Road 02Sewage NetworkA34450-old | 100% |  |  |  |  | Contract Price Original Scope [298879 SAR]; Crane Operator [6.6 h]; Boom Truck Operator [6.6 h]; Equipment Operator [6.6 h]; Labour [2551.67 h]; Pump Station PS03 - Control System [0.6] | 298,879.03 | 298,879.03 | RD2 |
| RSZone 1Road 02Sewage NetworkA34470-old |  | Zone 1 - Road 2 - Sewage Network - Pump Station (PS03) - In-line Booste Station (old) | 136d | 2026-05-26 A | 2026-11-01 A | RSZone 1Road 02Sewage NetworkA34360-old, RSZone 1Road 02Sewage NetworkA34520-old | 100% |  |  |  |  | Contract Price Original Scope [27588.8 SAR]; Crane Operator [0.12 h]; Boom Truck Operator [0.12 h]; Equipment Operator [0.12 h]; Labour [235.54 h]; Pump Station PS03 - In-line Booste Station [0.01] | 27,588.75 | 27,588.75 | RD2 |
| RSZone 1Road 02Sewage NetworkA34480-old |  | Zone 1 - Road 2 - Sewage Network - Pump Station (PS03) - Valves (old) | 135d | 2026-05-27 A | 2026-11-01 A | RSZone 1Road 02Sewage NetworkA34370-old, RSZone 1Road 02Sewage NetworkA34470-old | 100% |  |  |  |  | Contract Price Original Scope [2175.58 SAR]; Excavator Operator [0.8 h]; Crane Operator [0.8 h]; Equipment Operator [0.8 h]; Labour [18.57 h]; Pump Station PS03 - Valves [0.1] | 2,175.58 | 2,175.58 | RD2 |
| RSZone 1Road 02Sewage NetworkA34500-old |  | Zone 1 - Road 2 - Sewage Network - Pump Station (PS03) - Concrete Element Works (old) | 134d | 2026-05-28 A | 2026-11-01 A | RSZone 1Road 02Sewage NetworkA34390-old, RSZone 1Road 02Sewage NetworkA34480-old | 100% | 2026-05-28 | 2026-11-02 |  |  | Contract Price Original Scope [141280 SAR]; Crane Operator [6.2 h]; Pump Operator [6.2 h]; Equipment Operator [6.2 h]; Labour [1206.18 h]; Pump Station PS03 - Concrete Element Works [0.2] | 141,280.26 | 141,280.26 | RD2 |
| RSZone 1Road 02Sewage NetworkA34520-old |  | Zone 1 - Road 2 - Sewage Network - Pump Station (PS03) - Light Works (old) | 131d | 2026-06-01 A | 2026-11-01 A | RSZone 1Road 02Sewage NetworkA34410-old, RSZone 1Road 02Sewage NetworkA34530-old | 100% |  |  |  |  | Contract Price Original Scope [189180 SAR]; Crane Operator [3.6 h]; Boom Truck Operator [3.6 h]; Equipment Operator [3.6 h]; Labour [1615.12 h]; Pump Station PS03 - Light Works [0.6] | 189,180.13 | 189,180.13 | RD2 |
| RSZone 1Road 02Sewage NetworkA34530-old |  | Zone 1 - Road 2 - Sewage Network - Pump Station (PS03) - UPVC Ducts (old) | 130d | 2026-06-02 A | 2026-11-01 A | RSZone 1Road 02Sewage NetworkA34490, RSZone 1Road 02Sewage NetworkA34420-old | 100% |  |  |  |  | Contract Price Original Scope [2074 SAR]; Crane Operator [5.5 h]; Boom Truck Operator [5.5 h]; Equipment Operator [5.5 h]; Labour [17.71 h]; Pump Station PS03 - UPVC Ducts [0.5] | 2,074 | 2,074 | RD2 |
| RSZone 1Road 02Sewage NetworkA34530 |  | Zone 1 - Road 2 - Sewage Network - Pump Station (PS03) - UPVC Ducts | 1d | 2026-11-10 | 2026-11-10 | RSZone 1Road 02Sewage NetworkA34530-old, RSZone 1Road 02Sewage NetworkA34420 |  |  |  | 76.26d | 0d | Contract Price Original Scope [2074 SAR]; Crane Operator [5.5 h]; Boom Truck Operator [5.5 h]; Equipment Operator [5.5 h]; Labour [17.71 h]; Pump Station PS03 - UPVC Ducts [0.5] | 2,074 |  | RD2 |
| RSZone 1Road 02Sewage NetworkA34520 |  | Zone 1 - Road 2 - Sewage Network - Pump Station (PS03) - Light Works | 1.2d | 2026-11-11 | 2026-11-12 | RSZone 1Road 02Sewage NetworkA34520-old, RSZone 1Road 02Sewage NetworkA34410, RSZone 1Road 02Sewage NetworkA34530 |  |  |  | 76.26d | 0.78d | Contract Price Original Scope [126120 SAR]; Crane Operator [2.4 h]; Boom Truck Operator [2.4 h]; Equipment Operator [2.4 h]; Labour [1076.75 h]; Pump Station PS03 - Light Works [0.4] | 126,120.08 |  | RD2 |
| RSZone 1Road 02Sewage NetworkA34470 |  | Zone 1 - Road 2 - Sewage Network - Pump Station (PS03) - In-line Booste Station | 1.09d | 2026-11-12 | 2026-11-15 | RSZone 1Road 02Sewage NetworkA34470-old, RSZone 1Road 02Sewage NetworkA34360, RSZone 1Road 02Sewage NetworkA34520 |  |  |  | 75.48d | 0.23d | Contract Price Original Scope [2573636 SAR]; Crane Operator [10.88 h]; Boom Truck Operator [10.88 h]; Equipment Operator [10.88 h]; Labour [21972.4 h]; Pump Station PS03 - In-line Booste Station [0.99] | 2,573,635.97 |  | RD2 |
| RSZone 1Road 02Sewage NetworkA34480 |  | Zone 1 - Road 2 - Sewage Network - Pump Station (PS03) - Valves | 2.7d | 2026-11-15 | 2026-11-18 | RSZone 1Road 02Sewage NetworkA34480-old, RSZone 1Road 02Sewage NetworkA34370, RSZone 1Road 02Sewage NetworkA34470 |  |  |  | 74.77d | 0d | Contract Price Original Scope [19580.2 SAR]; Excavator Operator [7.2 h]; Crane Operator [7.2 h]; Equipment Operator [7.2 h]; Labour [167.17 h]; Pump Station PS03 - Valves [0.9] | 19,580.2 |  | RD2 |
| RSZone 1Road 02Sewage NetworkA34500 |  | Zone 1 - Road 2 - Sewage Network - Pump Station (PS03) - Concrete Element Works | 2.48d | 2026-11-19 | 2026-11-23 | RSZone 1Road 02Sewage NetworkA34500-old, RSZone 1Road 02Sewage NetworkA34390, RSZone 1Road 02Sewage NetworkA34480 |  |  |  | 73.47d | 0d | Contract Price Original Scope [565121 SAR]; Crane Operator [24.8 h]; Pump Operator [24.8 h]; Equipment Operator [24.8 h]; Labour [4824.71 h]; Pump Station PS03 - Concrete Element Works [0.8] | 565,121.02 |  | RD2 |
| RSZone 1Road 02Sewage NetworkA34450 |  | Zone 1 - Road 2 - Sewage Network - Pump Station (PS03) - Pumps | 2.97d | 2027-02-03 | 2027-02-07 | RSZone 1Road 02Sewage NetworkA34450-old, Procurment.Dos.2, RSZone 1Road 02Sewage NetworkA34340, RSZone 1Road 02Sewage NetworkA34500 |  |  |  | 10.8d | 6.1d | Contract Price Original Scope [3022623 SAR]; Crane Operator [7.92 h]; Boom Truck Operator [7.92 h]; Equipment Operator [7.92 h]; Labour [25805.6 h]; Pump Station PS03 - Pumps [0.99] | 3,022,622.77 |  | RD2 |
| RSZone 1Road 02Sewage NetworkA34460 |  | Zone 1 - Road 2 - Sewage Network - Pump Station (PS03) - Control System | 1d | 2027-02-16 | 2027-02-17 | RSZone 1Road 02Sewage NetworkA34460-old, RSZone 1Road 02Sewage NetworkA34350, RSZone 1Road 02Sewage NetworkA34450 |  |  |  | 2.7d | 2.1d | Contract Price Original Scope [199253 SAR]; Crane Operator [4.4 h]; Boom Truck Operator [4.4 h]; Equipment Operator [4.4 h]; Labour [1701.12 h]; Pump Station PS03 - Control System [0.4] | 199,252.69 |  | RD2 |
| RSZone 1Road 02Sewage NetworkA34510 |  | Zone 1 - Road 2 - Sewage Network - Pump Station (PS03) - MCC | 2.6d | 2027-02-22 | 2027-02-28 | RSZone 1Road 02Sewage NetworkA34400, RSZone 1Road 02Sewage NetworkA34460, RSZone 1Road 02Sewage NetworkA34450, RSZone 1Road 02Sewage NetworkA34480, RSZone 1Road 02Sewage NetworkA34500, Procurment.Dos.2 |  |  |  | 0.6d | 0d | Contract Price Original Scope [367850 SAR]; Crane Operator [26 h]; Boom Truck Operator [26 h]; Equipment Operator [26 h]; Labour [3140.51 h]; Pump Station PS03 - MCC [1] | 367,849.92 |  | RD2 |
| RSZone 1Road 02Sewage NetworkA34540 |  | Zone 1 - Road 2 - Sewage Network - Pump Station (PS03) - Earthing | 3d | 2027-02-28 | 2027-03-06 | RSZone 1Road 02Sewage NetworkA34430, RSZone 1Road 02Sewage NetworkA34510 |  |  |  | 0.7d | 0d | Contract Price Original Scope [16144.2 SAR]; Crane Operator [8 h]; Boom Truck Operator [8 h]; Equipment Operator [8 h]; Labour [137.83 h]; Pump Station PS03 - Earthing [1] | 16,144.22 |  | RD2 |
| RSZone 1Road 02Sewage NetworkA34550 |  | Zone 1 - Road 2 - Sewage Network - Pump Station (PS03) - Interlock Paving | 3d | 2027-03-06 | 2027-03-11 | RSZone 1Road 02Sewage NetworkA34440, RSZone 1Road 02Sewage NetworkA34540 |  |  |  | 0.7d | 0.1d | Contract Price Original Scope [52937.9 SAR]; Compactor Operator [7 h]; Equipment Operator [7 h]; Water Truck Operator [7 h]; Labour [451.96 h]; Pump Station PS03 - Interlock Paving [1] | 52,937.88 |  | RD2 |

| ID | WBS | Activity | Duration | Start | Finish | Predecessors | Complete | Planned start | Planned finish | Total float | Free float | Resources | Cost | Actual cost | MODON |
| --- | --- | --- | --- | --- | --- | --- | --- | --- | --- | --- | --- | --- | --- | --- | --- |
|  | 4 | **Pump Station (PS04)** |  | 2025-11-04 | 2027-03-17 |  |  |  |  |  |  |  |  |  |  |
| RSZone 1Road 02Sewage NetworkA34600 |  | Zone 1 - Road 2 - Sewage Network - Pump Station (PS04) - Raked bar SS 316 (35 mm) | 2d | 2025-11-04 A | 2025-11-05 A | RSZone 1Road 02Sewage NetworkA34490 | 100% |  |  |  |  | Contract Price Original Scope [31530.1 SAR]; Crane Operator [8 h]; Boom Truck Operator [8 h]; Equipment Operator [8 h]; Labour [269.19 h]; Pump Station PS04 - Raked bar SS 316 (35 mm) [1] | 31,530.11 | 31,530.11 | RD2 |
| RSZone 1Road 02Sewage NetworkA34680 |  | Zone 1 - Road 2 - Sewage Network - Pump Station (PS04) - Fence & Gates | 5d | 2025-11-13 A | 2025-11-18 A | RSZone 1Road 02Sewage NetworkA34600, RSZone 1Road 02Sewage NetworkA34490 | 100% | 2025-11-13 | 2025-11-19 |  |  | Contract Price Original Scope [398971 SAR]; Crane Operator [16 h]; Boom Truck Operator [16 h]; Equipment Operator [16 h]; Labour [3406.21 h]; Pump Station PS04 - Fence and Gates [1] | 398,971.29 | 398,971.29 | RD2 |
| RSZone 1Road 02Sewage NetworkA34560-old |  | Zone 1 - Road 2 - Sewage Network - Pump Station (PS04) - Pumps (old) | 136d | 2026-05-26 A | 2026-11-01 A | Procurment.Po.4, RSZone 1Road 02Sewage NetworkA34450-old, RSZone 1Road 02Sewage NetworkA34610-old | 100% |  |  |  |  | Contract Price Original Scope [13085.1 SAR]; Crane Operator [0.08 h]; Boom Truck Operator [0.08 h]; Equipment Operator [0.08 h]; Labour [111.71 h]; Pump Station PS04 - Pumps [0.01] | 13,085.09 | 13,085.09 | RD2 |
| RSZone 1Road 02Sewage NetworkA34570-old |  | Zone 1 - Road 2 - Sewage Network - Pump Station (PS04) - Control System (old) | 135d | 2026-05-27 A | 2026-11-01 A | RSZone 1Road 02Sewage NetworkA34680 | 100% |  |  |  |  | Contract Price Original Scope [210596 SAR]; Crane Operator [13.8 h]; Boom Truck Operator [13.8 h]; Equipment Operator [13.8 h]; Labour [1797.96 h]; Pump Station PS04 - Control System [0.6] | 210,595.76 | 210,595.76 | RD2 |
| RSZone 1Road 02Sewage NetworkA34580-old |  | Zone 1 - Road 2 - Sewage Network - Pump Station (PS04) - In-line Booste Station (old) | 132d | 2026-05-31 A | 2026-11-01 A | RSZone 1Road 02Sewage NetworkA34470-old, RSZone 1Road 02Sewage NetworkA34630-old | 100% |  |  |  |  | Contract Price Original Scope [10247.2 SAR]; Crane Operator [0.06 h]; Boom Truck Operator [0.06 h]; Equipment Operator [0.06 h]; Labour [87.49 h]; Pump Station PS04 - In-line Booste Station [0.01] | 10,247.25 | 10,247.25 | RD2 |
| RSZone 1Road 02Sewage NetworkA34590-old |  | Zone 1 - Road 2 - Sewage Network - Pump Station (PS04) - Valves (old) | 130d | 2026-06-02 A | 2026-11-01 A | RSZone 1Road 02Sewage NetworkA34480-old, RSZone 1Road 02Sewage NetworkA34580-old | 100% |  |  |  |  | Contract Price Original Scope [2648.53 SAR]; Excavator Operator [0.6 h]; Crane Operator [0.6 h]; Equipment Operator [0.6 h]; Labour [22.61 h]; Pump Station PS04 - Valves [0.1] | 2,648.53 | 2,648.53 | RD2 |
| RSZone 1Road 02Sewage NetworkA34610-old |  | Zone 1 - Road 2 - Sewage Network - Pump Station (PS04) - Concrete Element Works (old) | 129d | 2026-06-03 A | 2026-11-01 A | RSZone 1Road 02Sewage NetworkA34500-old, RSZone 1Road 02Sewage NetworkA34590-old | 100% |  |  |  |  | Contract Price Original Scope [121355 SAR]; Crane Operator [6.2 h]; Pump Operator [6.2 h]; Equipment Operator [6.2 h]; Labour [1036.07 h]; Pump Station PS04 - Concrete Element Works [0.2] | 121,355.16 | 121,355.16 | RD2 |
| RSZone 1Road 02Sewage NetworkA34630-old |  | Zone 1 - Road 2 - Sewage Network - Pump Station (PS04) - Light Works (old) | 126d | 2026-06-07 A | 2026-11-01 A | RSZone 1Road 02Sewage NetworkA34520-old, RSZone 1Road 02Sewage NetworkA34640-old | 100% |  |  |  |  | Contract Price Original Scope [189180 SAR]; Crane Operator [3.6 h]; Boom Truck Operator [3.6 h]; Equipment Operator [3.6 h]; Labour [1615.12 h]; Pump Station PS04 - Light Works [0.6] | 189,180.13 | 189,180.13 | RD2 |
| RSZone 1Road 02Sewage NetworkA34640-old |  | Zone 1 - Road 2 - Sewage Network - Pump Station (PS04) - UPVC Ducts (old) | 124d | 2026-06-09 A | 2026-11-01 A | RSZone 1Road 02Sewage NetworkA34530-old, RSZone 1Road 02Sewage NetworkA34570-old | 100% |  |  |  |  | Contract Price Original Scope [2074 SAR]; Crane Operator [4 h]; Boom Truck Operator [4 h]; Equipment Operator [4 h]; Labour [17.71 h]; Pump Station PS04 - UPVC Ducts [0.5] | 2,074 | 2,074 | RD2 |
| RSZone 1Road 02Sewage NetworkA34570 |  | Zone 1 - Road 2 - Sewage Network - Pump Station (PS04) - Control System | 1d | 2026-11-09 | 2026-11-09 | RSZone 1Road 02Sewage NetworkA34570-old |  |  |  | 75.88d | 0d | Contract Price Original Scope [140397 SAR]; Crane Operator [9.2 h]; Boom Truck Operator [9.2 h]; Equipment Operator [9.2 h]; Labour [1198.64 h]; Pump Station PS04 - Control System [0.4] | 140,397.18 |  | RD2 |
| RSZone 1Road 02Sewage NetworkA34670 |  | Zone 1 - Road 2 - Sewage Network - Pump Station (PS04) - Tank | 1.6d | 2026-11-10 | 2026-11-11 | RSZone 1Road 02Sewage NetworkA34570 |  |  |  | 75.88d | 0d | Contract Price Original Scope [1391029 SAR]; Crane Operator [16 h]; Boom Truck Operator [16 h]; Equipment Operator [16 h]; Labour [11875.9 h]; Pump Station PS04 - Tank [1] | 1,391,029.13 |  | RD2 |
| RSZone 1Road 02Sewage NetworkA34640 |  | Zone 1 - Road 2 - Sewage Network - Pump Station (PS04) - UPVC Ducts | 1.5d | 2026-11-11 | 2026-11-14 | RSZone 1Road 02Sewage NetworkA34640-old, RSZone 1Road 02Sewage NetworkA34530, RSZone 1Road 02Sewage NetworkA34670 |  |  |  | 75.88d | 0d | Contract Price Original Scope [2074 SAR]; Crane Operator [4 h]; Boom Truck Operator [4 h]; Equipment Operator [4 h]; Labour [17.71 h]; Pump Station PS04 - UPVC Ducts [0.5] | 2,074 |  | RD2 |
| RSZone 1Road 02Sewage NetworkA34630 |  | Zone 1 - Road 2 - Sewage Network - Pump Station (PS04) - Light Works | 1.2d | 2026-11-14 | 2026-11-15 | RSZone 1Road 02Sewage NetworkA34630-old, RSZone 1Road 02Sewage NetworkA34520, RSZone 1Road 02Sewage NetworkA34640 |  |  |  | 75.88d | 0d | Contract Price Original Scope [126120 SAR]; Crane Operator [2.4 h]; Boom Truck Operator [2.4 h]; Equipment Operator [2.4 h]; Labour [1076.75 h]; Pump Station PS04 - Light Works [0.4] | 126,120.08 |  | RD2 |
| RSZone 1Road 02Sewage NetworkA34580 |  | Zone 1 - Road 2 - Sewage Network - Pump Station (PS04) - In-line Booste Station | 2.97d | 2026-11-15 | 2026-11-18 | RSZone 1Road 02Sewage NetworkA34580-old, RSZone 1Road 02Sewage NetworkA34470, RSZone 1Road 02Sewage NetworkA34630 |  |  |  | 75.88d | 0.21d | Contract Price Original Scope [1014477 SAR]; Crane Operator [5.94 h]; Boom Truck Operator [5.94 h]; Equipment Operator [5.94 h]; Labour [8661.08 h]; Pump Station PS04 - In-line Booste Station [0.99] | 1,014,477.31 |  | RD2 |
| RSZone 1Road 02Sewage NetworkA34590 |  | Zone 1 - Road 2 - Sewage Network - Pump Station (PS04) - Valves | 2.7d | 2026-11-18 | 2026-11-22 | RSZone 1Road 02Sewage NetworkA34590-old, RSZone 1Road 02Sewage NetworkA34480, RSZone 1Road 02Sewage NetworkA34580 |  |  |  | 75.67d | 1.08d | Contract Price Original Scope [23836.8 SAR]; Excavator Operator [5.4 h]; Crane Operator [5.4 h]; Equipment Operator [5.4 h]; Labour [203.51 h]; Pump Station PS04 - Valves [0.9] | 23,836.76 |  | RD2 |
| RSZone 1Road 02Sewage NetworkA34610 |  | Zone 1 - Road 2 - Sewage Network - Pump Station (PS04) - Concrete Element Works | 2.48d | 2026-11-23 | 2026-11-25 | RSZone 1Road 02Sewage NetworkA34610-old, RSZone 1Road 02Sewage NetworkA34500, RSZone 1Road 02Sewage NetworkA34590 |  |  |  | 74.59d | 0d | Contract Price Original Scope [485421 SAR]; Crane Operator [24.8 h]; Pump Operator [24.8 h]; Equipment Operator [24.8 h]; Labour [4144.27 h]; Pump Station PS04 - Concrete Element Works [0.8] | 485,420.63 |  | RD2 |
| RSZone 1Road 02Sewage NetworkA34560 |  | Zone 1 - Road 2 - Sewage Network - Pump Station (PS04) - Pumps | 2.97d | 2027-02-14 | 2027-02-17 | RSZone 1Road 02Sewage NetworkA34560-old, Procurment.Dos.3, RSZone 1Road 02Sewage NetworkA34450, RSZone 1Road 02Sewage NetworkA34610 |  |  |  | 5.33d | 0d | Contract Price Original Scope [1295424 SAR]; Crane Operator [7.92 h]; Boom Truck Operator [7.92 h]; Equipment Operator [7.92 h]; Labour [11059.7 h]; Pump Station PS04 - Pumps [0.99] | 1,295,423.67 |  | RD2 |
| RSZone 1Road 02Sewage NetworkA34620 |  | Zone 1 - Road 2 - Sewage Network - Pump Station (PS04) - MCC | 3.1d | 2027-02-28 | 2027-03-06 | RSZone 1Road 02Sewage NetworkA34510, RSZone 1Road 02Sewage NetworkA34560, RSZone 1Road 02Sewage NetworkA34590, RSZone 1Road 02Sewage NetworkA34610 |  |  |  | 0.6d | 0d | Contract Price Original Scope [157652 SAR]; Crane Operator [31 h]; Boom Truck Operator [31 h]; Equipment Operator [31 h]; Labour [1345.95 h]; Pump Station PS04 - MCC [1] | 157,651.66 |  | RD2 |
| RSZone 1Road 02Sewage NetworkA34650 |  | Zone 1 - Road 2 - Sewage Network - Pump Station (PS04) - Earthing | 3d | 2027-03-06 | 2027-03-11 | RSZone 1Road 02Sewage NetworkA34540, RSZone 1Road 02Sewage NetworkA34620 |  |  |  | 0.6d | 0d | Contract Price Original Scope [16144.2 SAR]; Crane Operator [8 h]; Boom Truck Operator [8 h]; Equipment Operator [8 h]; Labour [137.83 h]; Pump Station PS04 - Earthing [1] | 16,144.22 |  | RD2 |
| RSZone 1Road 02Sewage NetworkA34660 |  | Zone 1 - Road 2 - Sewage Network - Pump Station (PS04) - Interlock Paving | 3d | 2027-03-11 | 2027-03-17 | RSZone 1Road 02Sewage NetworkA34550, RSZone 1Road 02Sewage NetworkA34650 |  |  |  | 0.6d | 0d | Contract Price Original Scope [21072.4 SAR]; Compactor Operator [7 h]; Equipment Operator [7 h]; Water Truck Operator [7 h]; Labour [179.9 h]; Pump Station PS04 - Interlock Paving [1] | 21,072.36 |  | RD2 |
|  | 7 | **Potable Network** |  | 2025-11-19 | 2026-12-02 |  |  |  |  |  |  |  |  |  |  |
|  | 4 | **Potable Pipes 355 MM** |  | 2026-05-17 | 2026-06-01 |  |  |  |  |  |  |  |  |  |  |
| RSZone 1Road 02Potable NetworkA85350 |  | Zone 1 - Road 2 - Potable Network - Potable Pipes 355 MM - Excavation | 4d | 2026-05-17 A | 2026-05-20 A | Engineering Approval.3, Milestone.1 | 100% |  |  |  |  | Contract Price Original Scope [45232.5 SAR]; Excavator Operator [30 h]; Dump Truck Operator [30 h]; Labour [386.17 h]; Potable Pipes 355 MM [435] | 45,232.47 | 45,232.47 | RD2 |
| RSZone 1Road 02Potable NetworkA85360 |  | Zone 1 - Road 2 - Potable Network - Potable Pipes 355 MM - Installation | 4d | 2026-05-21 A | 2026-05-25 A | RSZone 1Road 02Potable NetworkA85350 | 100% | 2026-05-21 | 2026-05-26 |  |  | Contract Price Original Scope [316627 SAR]; Labour [2703.2 h]; Potable Pipes 355 MM [435] | 316,627.29 | 316,627.29 | RD2 |
| RSZone 1Road 02Potable NetworkA85370 |  | Zone 1 - Road 2 - Potable Network - Potable Pipes 355 MM - Test | 2d | 2026-05-26 A | 2026-05-27 A | RSZone 1Road 02Potable NetworkA85360 | 100% |  |  |  |  | Contract Price Original Scope [45232.5 SAR]; Pump Operator [20 h]; Equipment Operator [20 h]; Labour [386.17 h]; Potable Pipes 355 MM [435] | 45,232.47 | 45,232.47 | RD2 |
| RSZone 1Road 02Potable NetworkA85380 |  | Zone 1 - Road 2 - Potable Network - Potable Pipes 355 MM - Backfilling | 4d | 2026-05-28 A | 2026-06-01 A | RSZone 1Road 02Potable NetworkA85370 | 100% | 2026-05-28 | 2026-06-02 |  |  | Contract Price Original Scope [45232.5 SAR]; Excavator Operator [20 h]; Compactor Operator [20 h]; Dump Truck Operator [20 h]; Water Truck Operator [20 h]; Labour [386.17 h]; Potable Pipes 355 MM [435] | 45,232.47 | 45,232.47 | RD2 |

| ID | WBS | Activity | Duration | Start | Finish | Predecessors | Complete | Total float | Free float | Resources | Cost | Actual cost | MODON |
| --- | --- | --- | --- | --- | --- | --- | --- | --- | --- | --- | --- | --- | --- |
|  | 2 | **Potable Pipes 200 MM** |  | 2026-07-13 | 2026-11-10 |  |  |  |  |  |  |  |  |
| RSZone 1Road 02Potable NetworkA85390 |  | Zone 1 - Road 2 - Potable Network - Potable Pipes 200 MM - Excavation | 6d | 2026-07-13 A | 2026-07-19 A | RSZone 1Road 02Potable NetworkA85380 | 100% |  |  | Contract Price Original Scope [11928.5 SAR]; Excavator Operator [30 h]; Dump Truck Operator [30 h]; Labour [101.84 h]; Potable Pipes 200 MM [476] | 11,928.49 | 11,928.49 | RD2 |
| RSZone 1Road 02Potable NetworkA85400 |  | Zone 1 - Road 2 - Potable Network - Potable Pipes 200 MM - Installation | 2d | 2026-07-20 A | 2026-07-21 A | RSZone 1Road 02Potable NetworkA85390 | 100% |  |  | Contract Price Original Scope [83499.4 SAR]; Labour [712.87 h]; Potable Pipes 200 MM [476] | 83,499.44 | 83,499.44 | RD2 |
| RSZone 1Road 02Potable NetworkA85410-old |  | Zone 1 - Road 2 - Potable Network - Potable Pipes 200 MM - Test (old) | 47d | 2026-09-07 A | 2026-11-01 A | RSZone 1Road 02Potable NetworkA85400 | 100% |  |  | Contract Price Original Scope [10208.8 SAR]; Pump Operator [17.12 h]; Equipment Operator [17.12 h]; Labour [87.16 h]; Potable Pipes 200 MM [407.38] | 10,208.8 | 10,208.8 | RD2 |
| RSZone 1Road 02Potable NetworkA85420-old |  | Zone 1 - Road 2 - Potable Network - Potable Pipes 200 MM - Backfilling (old) | 46d | 2026-09-08 A | 2026-11-01 A | RSZone 1Road 02Potable NetworkA85410-old | 100% |  |  | Contract Price Original Scope [10208.8 SAR]; Excavator Operator [17.12 h]; Compactor Operator [17.12 h]; Dump Truck Operator [17.12 h]; Water Truck Operator [17.12 h]; Labour [87.16 h]; Potable Pipes 200 MM [407.38] | 10,208.8 | 10,208.8 | RD2 |
| RSZone 1Road 02Potable NetworkA85410 |  | Zone 1 - Road 2 - Potable Network - Potable Pipes 200 MM - Test | 1d | 2026-11-09 | 2026-11-09 | RSZone 1Road 02Potable NetworkA85410-old |  | 99.4d | 0d | Contract Price Original Scope [1719.69 SAR]; Pump Operator [2.88 h]; Equipment Operator [2.88 h]; Labour [14.68 h]; Potable Pipes 200 MM [68.62] | 1,719.69 |  | RD2 |
| RSZone 1Road 02Potable NetworkA85420 |  | Zone 1 - Road 2 - Potable Network - Potable Pipes 200 MM - Backfilling | 1d | 2026-11-10 | 2026-11-10 | RSZone 1Road 02Potable NetworkA85420-old, RSZone 1Road 02Potable NetworkA85410 |  | 99.4d | 99.2d | Contract Price Original Scope [1719.69 SAR]; Excavator Operator [2.88 h]; Compactor Operator [2.88 h]; Dump Truck Operator [2.88 h]; Water Truck Operator [2.88 h]; Labour [14.68 h]; Potable Pipes 200 MM [68.62] | 1,719.69 |  | RD2 |
|  | 6 | **Fittings** |  | 2026-06-09 | 2026-11-15 |  |  |  |  |  |  |  |  |
|  | 2 | **Elbows** |  | 2026-06-09 | 2026-11-15 |  |  |  |  |  |  |  |  |
| RSZone 1Road 02Potable NetworkA55420-old |  | Zone 1 - Road 2 - Potable Network - Elbows - Installation (old) | 124d | 2026-06-09 A | 2026-11-01 A | RSZone 1Road 02Potable NetworkA85400, Pre Test.1-old | 100% |  |  | Contract Price Original Scope [24396.4 SAR]; Labour [208.28 h]; Fittings - Elbows (all sizes) [13] | 24,396.39 | 24,396.39 | RD2 |
| RSZone 1Road 02Potable NetworkA55420 |  | Zone 1 - Road 2 - Potable Network - Elbows - Installation | 1.74d | 2026-11-12 | 2026-11-15 | RSZone 1Road 02Potable NetworkA55420-old, Pre Test.1 |  | 96d | 95.8d | Contract Price Original Scope [33767.2 SAR]; Labour [288.29 h]; Fittings - Elbows (all sizes) [18] | 33,767.19 |  | RD2 |
|  | 3 | **Tees** |  | 2026-06-10 | 2026-11-10 |  |  |  |  |  |  |  |  |
| RSZone 1Road 02Potable NetworkA55430-old |  | Zone 1 - Road 2 - Potable Network - Tees - Installation (old) | 123d | 2026-06-10 A | 2026-11-01 A | RSZone 1Road 02Potable NetworkA85400 | 100% |  |  | Contract Price Original Scope [53992.8 SAR]; Labour [460.96 h]; Fittings - Tees (all sizes) [18] | 53,992.83 | 53,992.83 | RD2 |
| RSZone 1Road 02Potable NetworkA55430 |  | Zone 1 - Road 2 - Potable Network - Tees - Installation | 1.65d | 2026-11-09 | 2026-11-10 | RSZone 1Road 02Potable NetworkA55430-old |  | 99.75d | 99.55d | Contract Price Original Scope [65991.2 SAR]; Labour [563.4 h]; Fittings - Tees (all sizes) [22] | 65,991.24 |  | RD2 |
|  | 5 | **End Cap** |  | 2026-06-10 | 2026-11-09 |  |  |  |  |  |  |  |  |
| RSZone 1Road 02Potable NetworkA55440-old |  | Zone 1 - Road 2 - Potable Network - End Cap - Installation (old) | 123d | 2026-06-10 A | 2026-11-01 A | RSZone 1Road 02Potable NetworkA85400 | 100% |  |  | Contract Price Original Scope [6577.97 SAR]; Labour [56.16 h]; Fittings - End Caps (all sizes) [9] | 6,577.97 | 6,577.97 | RD2 |
| RSZone 1Road 02Potable NetworkA55440 |  | Zone 1 - Road 2 - Potable Network - End Cap - Installation | 1d | 2026-11-09 | 2026-11-09 | RSZone 1Road 02Potable NetworkA55440-old |  | 97.3d | 0d | Contract Price Original Scope [2924.71 SAR]; Labour [24.97 h]; Fittings - End Caps (all sizes) [4] | 2,924.71 |  | RD2 |
|  | 4 | **Reducer** |  | 2026-11-10 | 2026-11-14 |  |  |  |  |  |  |  |  |
| RSZone 1Road 02Potable NetworkA55450 |  | Zone 1 - Road 2 - Potable Network - Reducer - Installation | 3.1d | 2026-11-10 | 2026-11-14 | RSZone 1Road 02Potable NetworkA55440 |  | 97.3d | 97.1d | Labour; Fittings - Reducers (all sizes) [11] |  |  | RD2 |
|  | 3 | **Sand Bedding** |  | 2025-11-19 | 2025-11-20 |  |  |  |  |  |  |  |  |
| RSZone 1Road 02Potable NetworkA55750 |  | Zone 1 - Road 2 - Potable Network - Sand Bedding - Bedding | 1.9d | 2025-11-19 A | 2025-11-20 A | RSZone 1Road 02Potable NetworkA85400 | 100% |  |  | Contract Price Original Scope [16930.6 SAR]; Compactor Operator [20 h]; Equipment Operator [20 h]; Water Truck Operator [20 h]; Labour [144.54 h]; Sand Bedding [911] | 16,930.63 | 16,930.63 | RD2 |
|  | 7 | **Valves** |  | 2026-06-21 | 2026-12-02 |  |  |  |  |  |  |  |  |
|  | 8 | **Washout Valves** |  | 2026-11-09 | 2026-11-18 |  |  |  |  |  |  |  |  |
| RSZone 1Road 02Potable NetworkA56490 |  | Zone 1 - Road 2 - Potable Network - Washout Valves - Surface Box | 3.1d | 2026-11-09 | 2026-11-12 | RSZone 1Road 02Potable NetworkA55750 |  | 0.2d | 0d | Labour; Washout / Air / other Valves [1] |  |  | RD2 |
| RSZone 1Road 02Potable NetworkA56480 |  | Zone 1 - Road 2 - Potable Network - Washout Valves - Installation | 3d | 2026-11-12 | 2026-11-16 | RSZone 1Road 02Potable NetworkA56490 |  | 93.3d | 0d | Labour; Washout / Air / other Valves [1] |  |  | RD2 |
| RSZone 1Road 02Potable NetworkA56500 |  | Zone 1 - Road 2 - Potable Network - Washout Valves - Test | 2d | 2026-11-16 | 2026-11-18 | RSZone 1Road 02Potable NetworkA56480 |  | 93.3d | 93.1d | Pump Operator [20 h]; Equipment Operator [20 h]; Labour; Washout / Air / other Valves [1] |  |  | RD2 |

| ID | WBS | Activity | Duration | Start | Finish | Predecessors | Complete | Total float | Free float | Resources | Cost | Actual cost | MODON |
| --- | --- | --- | --- | --- | --- | --- | --- | --- | --- | --- | --- | --- | --- |
|  | 5 | **Buried Valves** |  | 2026-06-21 | 2026-11-18 |  |  |  |  |  |  |  |  |
| RSZone 1Road 02Potable NetworkA55820-old |  | Zone 1 - Road 2 - Potable Network - Buried Valves - Excavation (old) | 114d | 2026-06-21 A | 2026-11-01 A | RSZone 1Road 02Potable NetworkA55750 | 100% |  |  | Contract Price Original Scope [3685.43 SAR]; Excavator Operator [23.8 h]; Dump Truck Operator [23.8 h]; Labour [31.46 h]; Buried Valves [23.01] | 3,685.43 | 3,685.43 | RD2 |
| RSZone 1Road 02Potable NetworkA55830-old |  | Zone 1 - Road 2 - Potable Network - Buried Valves - Installation (old) | 113d | 2026-06-22 A | 2026-11-01 A | RSZone 1Road 02Potable NetworkA55820-old | 100% |  |  | Contract Price Original Scope [47910.6 SAR]; Labour [409.04 h]; Buried Valves [23.01] | 47,910.62 | 47,910.62 | RD2 |
| RSZone 1Road 02Potable NetworkA55850-old |  | Zone 1 - Road 2 - Potable Network - Buried Valves - Test (old) | 112d | 2026-06-23 A | 2026-11-01 A | RSZone 1Road 02Potable NetworkA55830-old | 100% |  |  | Contract Price Original Scope [7045.68 SAR]; Pump Operator [7.58 h]; Equipment Operator [7.58 h]; Labour [60.15 h]; Buried Valves [11] | 7,045.68 | 7,045.68 | RD2 |
| RSZone 1Road 02Potable NetworkA55820 |  | Zone 1 - Road 2 - Potable Network - Buried Valves - Excavation | 1d | 2026-11-09 | 2026-11-09 | RSZone 1Road 02Potable NetworkA55820-old |  | 93.06d | 0d | Contract Price Original Scope [960.07 SAR]; Excavator Operator [6.2 h]; Dump Truck Operator [6.2 h]; Labour [8.2 h]; Buried Valves [5.99] | 960.07 |  | RD2 |
| RSZone 1Road 02Potable NetworkA55830 |  | Zone 1 - Road 2 - Potable Network - Buried Valves - Installation | 1d | 2026-11-10 | 2026-11-10 | RSZone 1Road 02Potable NetworkA55830-old, RSZone 1Road 02Potable NetworkA55820 |  | 93.06d | 0d | Contract Price Original Scope [12480.9 SAR]; Labour [106.56 h]; Buried Valves [5.99] | 12,480.92 |  | RD2 |
| RSZone 1Road 02Potable NetworkA55850 |  | Zone 1 - Road 2 - Potable Network - Buried Valves - Test | 1.24d | 2026-11-11 | 2026-11-12 | RSZone 1Road 02Potable NetworkA55850-old, RSZone 1Road 02Potable NetworkA55830 |  | 93.06d | 0d | Contract Price Original Scope [11536.3 SAR]; Pump Operator [12.42 h]; Equipment Operator [12.42 h]; Labour [98.49 h]; Buried Valves [18] | 11,536.33 |  | RD2 |
| RSZone 1Road 02Potable NetworkA55840 |  | Zone 1 - Road 2 - Potable Network - Buried Valves - Surface Box | 3.1d | 2026-11-12 | 2026-11-16 | RSZone 1Road 02Potable NetworkA55850, RSZone 1Road 02Potable NetworkA55820, RSZone 1Road 02Potable NetworkA55830 |  | 93.06d | 0d | Labour; Buried Valves [29] |  |  | RD2 |
| RSZone 1Road 02Potable NetworkA55860 |  | Zone 1 - Road 2 - Potable Network - Buried Valves - Backfilling | 2d | 2026-11-16 | 2026-11-18 | RSZone 1Road 02Potable NetworkA55840 |  | 93.06d | 92.86d | Contract Price Original Scope [9291.01 SAR]; Excavator Operator [20 h]; Compactor Operator [20 h]; Dump Truck Operator [20 h]; Water Truck Operator [20 h]; Labour [79.32 h]; Buried Valves [29] | 9,291.01 |  | RD2 |
|  | 9 | **Air Valves** |  | 2026-11-12 | 2026-11-22 |  |  |  |  |  |  |  |  |
| RSZone 1Road 02Potable NetworkA56690 |  | Zone 1 - Road 2 - Potable Network - Air Valves - Surface Box | 3d | 2026-11-12 | 2026-11-16 | RSZone 1Road 02Potable NetworkA56490 |  | 0.2d | 0d | Labour; Washout / Air / other Valves [2] |  |  | RD2 |
| RSZone 1Road 02Potable NetworkA56680 |  | Zone 1 - Road 2 - Potable Network - Air Valves - Installation | 3.1d | 2026-11-16 | 2026-11-19 | RSZone 1Road 02Potable NetworkA56690 |  | 90.2d | 0d | Labour; Washout / Air / other Valves [2] |  |  | RD2 |
| RSZone 1Road 02Potable NetworkA56700 |  | Zone 1 - Road 2 - Potable Network - Air Valves - Test | 2d | 2026-11-19 | 2026-11-22 | RSZone 1Road 02Potable NetworkA56680 |  | 90.2d | 90d | Pump Operator [20 h]; Equipment Operator [20 h]; Labour; Washout / Air / other Valves [2] |  |  | RD2 |
|  | 1 | **Butterfly Valves 355 MM** |  | 2026-11-16 | 2026-11-25 |  |  |  |  |  |  |  |  |
| RSZone 1Road 02Potable NetworkA88940 |  | Zone 1 - Road 2 - Potable Network - Butterfly Valves 355 MM - Installation | 3d | 2026-11-16 | 2026-11-19 | RSZone 1Road 02Potable NetworkA56690 |  | 0.2d | 0d | Contract Price Original Scope [28101.9 SAR]; Labour [239.92 h]; Butterfly Valves [5] | 28,101.94 |  | RD2 |
| RSZone 1Road 02Potable NetworkA88950 |  | Zone 1 - Road 2 - Potable Network - Butterfly Valves 355 MM - Surface Box | 3d | 2026-11-19 | 2026-11-23 | RSZone 1Road 02Potable NetworkA88940 |  | 87.3d | 0d | Labour; Butterfly Valves [5] |  |  | RD2 |
| RSZone 1Road 02Potable NetworkA88960 |  | Zone 1 - Road 2 - Potable Network - Butterfly Valves 355 MM - Test | 2d | 2026-11-23 | 2026-11-25 | RSZone 1Road 02Potable NetworkA88950 |  | 87.3d | 87.1d | Contract Price Original Scope [12043.7 SAR]; Pump Operator [20 h]; Equipment Operator [20 h]; Labour [102.82 h]; Butterfly Valves [5] | 12,043.69 |  | RD2 |
|  | 2 | **Butterfly Valves 560 MM** |  | 2026-11-19 | 2026-11-29 |  |  |  |  |  |  |  |  |
| RSZone 1Road 02Potable NetworkA88990 |  | Zone 1 - Road 2 - Potable Network - Butterfly Valves 560 MM - Installation | 3d | 2026-11-19 | 2026-11-23 | RSZone 1Road 02Potable NetworkA88940 |  | 0.2d | 0d | Contract Price Original Scope [11240.8 SAR]; Labour [95.97 h]; Butterfly Valves [2] | 11,240.78 |  | RD2 |
| RSZone 1Road 02Potable NetworkA89000 |  | Zone 1 - Road 2 - Potable Network - Butterfly Valves 560 MM - Surface Box | 3d | 2026-11-23 | 2026-11-26 | RSZone 1Road 02Potable NetworkA88990 |  | 84.3d | 0d | Labour; Butterfly Valves [2] |  |  | RD2 |
| RSZone 1Road 02Potable NetworkA89010 |  | Zone 1 - Road 2 - Potable Network - Butterfly Valves 560 MM - Test | 2d | 2026-11-26 | 2026-11-29 | RSZone 1Road 02Potable NetworkA89000 |  | 84.3d | 84.1d | Contract Price Original Scope [4817.48 SAR]; Pump Operator [20 h]; Equipment Operator [20 h]; Labour [41.13 h]; Butterfly Valves [2] | 4,817.48 |  | RD2 |
|  | 3 | **Butterfly Valves 710 MM** |  | 2026-11-23 | 2026-12-02 |  |  |  |  |  |  |  |  |
| RSZone 1Road 02Potable NetworkA89040 |  | Zone 1 - Road 2 - Potable Network - Butterfly Valves 710 MM - Installation | 3d | 2026-11-23 | 2026-11-26 | RSZone 1Road 02Potable NetworkA88990 |  | 0.2d | 0d | Contract Price Original Scope [22481.5 SAR]; Labour [191.94 h]; Butterfly Valves [4] | 22,481.55 |  | RD2 |
| RSZone 1Road 02Potable NetworkA89050 |  | Zone 1 - Road 2 - Potable Network - Butterfly Valves 710 MM - Surface Box | 3d | 2026-11-26 | 2026-11-30 | RSZone 1Road 02Potable NetworkA89040 |  | 81.3d | 0d | Labour; Butterfly Valves [4] |  |  | RD2 |
| RSZone 1Road 02Potable NetworkA89060 |  | Zone 1 - Road 2 - Potable Network - Butterfly Valves 710 MM - Test | 2d | 2026-11-30 | 2026-12-02 | RSZone 1Road 02Potable NetworkA89050 |  | 81.3d | 81.1d | Contract Price Original Scope [9634.95 SAR]; Pump Operator [20 h]; Equipment Operator [20 h]; Labour [82.26 h]; Butterfly Valves [4] | 9,634.95 |  | RD2 |

| ID | WBS | Activity | Duration | Start | Finish | Predecessors | Complete | Planned start | Planned finish | Total float | Free float | Resources | Cost | Actual cost | MODON |
| --- | --- | --- | --- | --- | --- | --- | --- | --- | --- | --- | --- | --- | --- | --- | --- |
|  | 1 | **Thurst Blocks** |  | 2026-06-21 | 2026-11-10 |  |  |  |  |  |  |  |  |  |  |
| RSZone 1Road 02Potable NetworkA55700-old |  | Zone 1 - Road 2 - Potable Network - Thurst Blocks - Thrust Block (old) | 114d | 2026-06-21 A | 2026-11-01 A | RSZone 1Road 02Potable NetworkA55750 | 100% |  |  |  |  | Contract Price Original Scope [16874 SAR]; Crane Operator [8.85 h]; Pump Operator [8.85 h]; Equipment Operator [8.85 h]; Labour [144.06 h]; Thrust Blocks [5] | 16,874.04 | 16,874.04 | RD2 |
| RSZone 1Road 02Potable NetworkA55700 |  | Zone 1 - Road 2 - Potable Network - Thurst Blocks - Thrust Block | 1.42d | 2026-11-09 | 2026-11-10 | RSZone 1Road 02Potable NetworkA55700-old |  |  |  | 99.98d | 99.78d | Contract Price Original Scope [26979.4 SAR]; Crane Operator [14.15 h]; Pump Operator [14.15 h]; Equipment Operator [14.15 h]; Labour [230.34 h]; Thrust Blocks [8] | 26,979.39 |  | RD2 |
|  | 13 | **Valve Chambers** |  | 2025-11-27 | 2026-11-24 |  |  |  |  |  |  |  |  |  |  |
|  | 11 | **Isolation Valve Chambers** |  | 2025-11-27 | 2026-11-24 |  |  |  |  |  |  |  |  |  |  |
| RSZone 1Road 02Potable NetworkA57020 |  | Zone 1 - Road 2 - Potable Network - Isolation Valve Chambers - Excavation | 5d | 2025-11-27 A | 2025-12-02 A | RSZone 1Road 02Potable NetworkA55750 | 100% | 2025-11-27 | 2025-12-03 |  |  | Contract Price Original Scope [2855.52 SAR]; Labour [24.38 h]; Isolation Valve Chambers [2] | 2,855.52 | 2,855.52 | RD2 |
| RSZone 1Road 02Potable NetworkA57030 |  | Zone 1 - Road 2 - Potable Network - Isolation Valve Chambers - Footings | 6d | 2025-12-03 A | 2025-12-09 A | RSZone 1Road 02Potable NetworkA57020 | 100% |  |  |  |  | Contract Price Original Scope [8566.56 SAR]; Labour [73.14 h]; Isolation Valve Chambers [2] | 8,566.56 | 8,566.56 | RD2 |
| RSZone 1Road 02Potable NetworkA57040 |  | Zone 1 - Road 2 - Potable Network - Isolation Valve Chambers - Walls | 7d | 2025-12-10 A | 2025-12-17 A | RSZone 1Road 02Potable NetworkA57030 | 100% |  |  |  |  | Contract Price Original Scope [11422.1 SAR]; Labour [97.52 h]; Isolation Valve Chambers [2] | 11,422.08 | 11,422.08 | RD2 |
| RSZone 1Road 02Potable NetworkA57050 |  | Zone 1 - Road 2 - Potable Network - Isolation Valve Chambers - Slab | 3d | 2026-11-09 | 2026-11-11 | RSZone 1Road 02Potable NetworkA57040 |  |  |  | 87.6d | 0d | Contract Price Original Scope [269847 SAR]; Labour [2303.81 h]; Isolation Valve Chambers [27] | 269,846.59 |  | RD2 |
| RSZone 1Road 02Potable NetworkA57070 |  | Zone 1 - Road 2 - Potable Network - Isolation Valve Chambers - Internal Isolation | 3d | 2026-11-12 | 2026-11-15 | RSZone 1Road 02Potable NetworkA57050 |  |  |  | 87.6d | 0d | Contract Price Original Scope [74243.5 SAR]; Labour [633.85 h]; Isolation Valve Chambers [52] | 74,243.5 |  | RD2 |
| RSZone 1Road 02Potable NetworkA57060 |  | Zone 1 - Road 2 - Potable Network - Isolation Valve Chambers - D.I Cover | 3d | 2026-11-16 | 2026-11-18 | RSZone 1Road 02Potable NetworkA57070 |  |  |  | 87.6d | 0d | Contract Price Original Scope [148487 SAR]; Labour [1267.71 h]; Isolation Valve Chambers [52] | 148,487.01 |  | RD2 |
| RSZone 1Road 02Potable NetworkA57080 |  | Zone 1 - Road 2 - Potable Network - Isolation Valve Chambers - External Isolation | 2.8d | 2026-11-19 | 2026-11-22 | RSZone 1Road 02Potable NetworkA57060 |  |  |  | 87.6d | 0d | Labour; Isolation Valve Chambers |  |  | RD2 |
| RSZone 1Road 02Potable NetworkA57090 |  | Zone 1 - Road 2 - Potable Network - Isolation Valve Chambers - Backfilling | 2d | 2026-11-22 | 2026-11-24 | RSZone 1Road 02Potable NetworkA57080 |  |  |  | 87.6d | 87.4d | Contract Price Original Scope [38549.5 SAR]; Excavator Operator [20 h]; Compactor Operator [20 h]; Dump Truck Operator [20 h]; Water Truck Operator [20 h]; Labour [329.12 h]; Isolation Valve Chambers [27] | 38,549.51 |  | RD2 |
|  | 12 | **FIRE HYDRANT** |  | 2026-06-28 | 2026-11-19 |  |  |  |  |  |  |  |  |  |  |
| RSZone 1Road 02Potable NetworkA57420-old |  | Zone 1 - Road 2 - Potable Network - FIRE HYDRANT - Excavation (old) | 108d | 2026-06-28 A | 2026-11-01 A | RSZone 1Road 02Potable NetworkA57020 | 100% |  |  |  |  | Contract Price Original Scope [30520.2 SAR]; Excavator Operator [27.5 h]; Dump Truck Operator [27.5 h]; Labour [260.57 h]; Fire Hydrant [22] | 30,520.2 | 30,520.2 | RD2 |
| RSZone 1Road 02Potable NetworkA57430-old |  | Zone 1 - Road 2 - Potable Network - FIRE HYDRANT - Buried Gate Valve Installation (old) | 107d | 2026-06-29 A | 2026-11-01 A | RSZone 1Road 02Potable NetworkA57420-old | 100% |  |  |  |  | Labour; Fire Hydrant [22] |  |  | RD2 |
| RSZone 1Road 02Potable NetworkA57440-old |  | Zone 1 - Road 2 - Potable Network - FIRE HYDRANT - Fire Hydrant Installation (old) | 106d | 2026-06-30 A | 2026-11-01 A | RSZone 1Road 02Potable NetworkA57430-old | 100% |  |  |  |  | Contract Price Original Scope [222797 SAR]; Labour [1902.13 h]; Fire Hydrant [22] | 222,797.49 | 222,797.49 | RD2 |
| RSZone 1Road 02Potable NetworkA57420 |  | Zone 1 - Road 2 - Potable Network - FIRE HYDRANT - Excavation | 1d | 2026-11-09 | 2026-11-09 | RSZone 1Road 02Potable NetworkA57420-old |  |  |  | 91.4d | 0d | Contract Price Original Scope [2774.56 SAR]; Excavator Operator [2.5 h]; Dump Truck Operator [2.5 h]; Labour [23.69 h]; Fire Hydrant [2] | 2,774.56 |  | RD2 |
| RSZone 1Road 02Potable NetworkA57430 |  | Zone 1 - Road 2 - Potable Network - FIRE HYDRANT - Buried Gate Valve Installation | 1d | 2026-11-10 | 2026-11-10 | RSZone 1Road 02Potable NetworkA57430-old, RSZone 1Road 02Potable NetworkA57420 |  |  |  | 91.4d | 0d | Labour; Fire Hydrant [2] |  |  | RD2 |
| RSZone 1Road 02Potable NetworkA57440 |  | Zone 1 - Road 2 - Potable Network - FIRE HYDRANT - Fire Hydrant Installation | 1d | 2026-11-11 | 2026-11-11 | RSZone 1Road 02Potable NetworkA57440-old, RSZone 1Road 02Potable NetworkA57430 |  |  |  | 91.4d | 0d | Contract Price Original Scope [20254.3 SAR]; Labour [172.92 h]; Fire Hydrant [2] | 20,254.32 |  | RD2 |
| RSZone 1Road 02Potable NetworkA57450 |  | Zone 1 - Road 2 - Potable Network - FIRE HYDRANT - Surface Box | 3d | 2026-11-12 | 2026-11-15 | RSZone 1Road 02Potable NetworkA57440, RSZone 1Road 02Potable NetworkA57420, RSZone 1Road 02Potable NetworkA57430 |  |  |  | 91.4d | 0d | Labour; Fire Hydrant [24] |  |  | RD2 |
| RSZone 1Road 02Potable NetworkA57460 |  | Zone 1 - Road 2 - Potable Network - FIRE HYDRANT - Test | 2d | 2026-11-16 | 2026-11-17 | RSZone 1Road 02Potable NetworkA57450 |  |  |  | 91.4d | 0d | Contract Price Original Scope [23306.3 SAR]; Pump Operator [20 h]; Equipment Operator [20 h]; Labour [198.98 h]; Fire Hydrant [24] | 23,306.34 |  | RD2 |
| RSZone 1Road 02Potable NetworkA57470 |  | Zone 1 - Road 2 - Potable Network - FIRE HYDRANT - Backfilling | 2d | 2026-11-18 | 2026-11-19 | RSZone 1Road 02Potable NetworkA57460 |  |  |  | 91.4d | 91.2d | Contract Price Original Scope [33294.8 SAR]; Excavator Operator [20 h]; Compactor Operator [20 h]; Dump Truck Operator [20 h]; Water Truck Operator [20 h]; Labour [284.25 h]; Fire Hydrant [24] | 33,294.77 |  | RD2 |
|  | 5 | **Lateral Irrigation Network** |  | 2025-07-28 | 2027-01-10 |  |  |  |  |  |  |  |  |  |  |
|  | 6 | **HDPE Pipes** |  | 2025-07-28 | 2025-09-02 |  |  |  |  |  |  |  |  |  |  |
|  | 2 | **HDPE Pipes 125 MM** |  | 2025-07-28 | 2025-08-12 |  |  |  |  |  |  |  |  |  |  |
| RSZone 1Road 02Irrigation NetworkA29900 |  | Zone 1 - Road 2 - Lateral Irrigation Network - HDPE Pipes 125 MM - Excavation | 3d | 2025-07-28 A | 2025-07-30 A | Engineering Approval.4, Milestone.1 | 100% |  |  |  |  | Contract Price Original Scope [6218.86 SAR]; Excavator Operator [30 h]; Dump Truck Operator [30 h]; Labour [53.09 h]; HDPE Pipes 125 MM [448] | 6,218.86 | 6,218.86 | RD2 |
| RSZone 1Road 02Irrigation NetworkA29910 |  | Zone 1 - Road 2 - Lateral Irrigation Network - HDPE Pipes 125 MM - Pipe Installation | 4d | 2025-07-31 A | 2025-08-04 A | RSZone 1Road 02Irrigation NetworkA29900 | 100% | 2025-07-31 | 2025-08-05 |  |  | Contract Price Original Scope [43532 SAR]; Excavator Operator [40 h]; Crane Operator [40 h]; Equipment Operator [40 h]; Labour [371.65 h]; HDPE Pipes 125 MM [448] | 43,532.02 | 43,532.02 | RD2 |
| RSZone 1Road 02Irrigation NetworkA29920 |  | Zone 1 - Road 2 - Lateral Irrigation Network - HDPE Pipes 125 MM - Test | 2d | 2025-08-05 A | 2025-08-06 A | RSZone 1Road 02Irrigation NetworkA29910 | 100% |  |  |  |  | Contract Price Original Scope [6218.86 SAR]; Pump Operator [20 h]; Equipment Operator [20 h]; Labour [53.09 h]; HDPE Pipes 125 MM [448] | 6,218.86 | 6,218.86 | RD2 |
| RSZone 1Road 02Irrigation NetworkA29930 |  | Zone 1 - Road 2 - Lateral Irrigation Network - HDPE Pipes 125 MM - Backfilling | 5d | 2025-08-07 A | 2025-08-12 A | RSZone 1Road 02Irrigation NetworkA29920 | 100% | 2025-08-07 | 2025-08-13 |  |  | Contract Price Original Scope [6218.86 SAR]; Excavator Operator [20 h]; Compactor Operator [20 h]; Dump Truck Operator [20 h]; Water Truck Operator [20 h]; Labour [53.09 h]; HDPE Pipes 125 MM [448] | 6,218.86 | 6,218.86 | RD2 |

| ID | WBS | Activity | Duration | Start | Finish | Predecessors | Complete | Planned start | Planned finish | Total float | Free float | Resources | Cost | Actual cost | MODON |
| --- | --- | --- | --- | --- | --- | --- | --- | --- | --- | --- | --- | --- | --- | --- | --- |
|  | 1 | **HDPE Pipes 160 MM** |  | 2025-08-03 | 2025-08-20 |  |  |  |  |  |  |  |  |  |  |
| RSZone 1Road 02Irrigation NetworkA31050 |  | Zone 1 - Road 2 - Lateral Irrigation Network - HDPE Pipes 160 MM - Excavation | 4.9d | 2025-08-03 A | 2025-08-07 A | RSZone 1Road 02Irrigation NetworkA29930 | 100% |  |  |  |  | Contract Price Original Scope [4894.83 SAR]; Excavator Operator [30 h]; Dump Truck Operator [30 h]; Labour [41.79 h]; HDPE Pipes 160 MM [331] | 4,894.83 | 4,894.83 | RD2 |
| RSZone 1Road 02Irrigation NetworkA31060 |  | Zone 1 - Road 2 - Lateral Irrigation Network - HDPE Pipes 160 MM - Pipe Installation | 4.9d | 2025-08-10 A | 2025-08-14 A | RSZone 1Road 02Irrigation NetworkA31050 | 100% |  |  |  |  | Contract Price Original Scope [34263.8 SAR]; Excavator Operator [40 h]; Crane Operator [40 h]; Equipment Operator [40 h]; Labour [292.53 h]; HDPE Pipes 160 MM [331] | 34,263.8 | 34,263.8 | RD2 |
| RSZone 1Road 02Irrigation NetworkA31070 |  | Zone 1 - Road 2 - Lateral Irrigation Network - HDPE Pipes 160 MM - Test | 2d | 2025-08-17 A | 2025-08-18 A | RSZone 1Road 02Irrigation NetworkA31060 | 100% |  |  |  |  | Contract Price Original Scope [4894.83 SAR]; Pump Operator [20 h]; Equipment Operator [20 h]; Labour [41.79 h]; HDPE Pipes 160 MM [331] | 4,894.83 | 4,894.83 | RD2 |
| RSZone 1Road 02Irrigation NetworkA31080 |  | Zone 1 - Road 2 - Lateral Irrigation Network - HDPE Pipes 160 MM - Backfilling | 2d | 2025-08-19 A | 2025-08-20 A | RSZone 1Road 02Irrigation NetworkA31070 | 100% |  |  |  |  | Contract Price Original Scope [4894.83 SAR]; Excavator Operator [20 h]; Compactor Operator [20 h]; Dump Truck Operator [20 h]; Water Truck Operator [20 h]; Labour [41.79 h]; HDPE Pipes 160 MM [331] | 4,894.83 | 4,894.83 | RD2 |
|  | 6 | **HDPE Pipes 280 MM** |  | 2025-08-18 | 2025-09-02 |  |  |  |  |  |  |  |  |  |  |
| RSZone 1Road 02Irrigation NetworkA32610 |  | Zone 1 - Road 2 - Lateral Irrigation Network - HDPE Pipes 280 MM - Excavation | 3.9d | 2025-08-18 A | 2025-08-21 A | RSZone 1Road 02Irrigation NetworkA31080 | 100% |  |  |  |  | Contract Price Original Scope [10897.4 SAR]; Excavator Operator [30 h]; Dump Truck Operator [30 h]; Labour [93.04 h]; HDPE Pipes 280 MM [324] | 10,897.42 | 10,897.42 | RD2 |
| RSZone 1Road 02Irrigation NetworkA32620 |  | Zone 1 - Road 2 - Lateral Irrigation Network - HDPE Pipes 280 MM - Pipe Installation | 3d | 2025-08-24 A | 2025-08-26 A | RSZone 1Road 02Irrigation NetworkA32610 | 100% |  |  |  |  | Contract Price Original Scope [76281.9 SAR]; Excavator Operator [40 h]; Crane Operator [40 h]; Equipment Operator [40 h]; Labour [651.26 h]; HDPE Pipes 280 MM [324] | 76,281.91 | 76,281.91 | RD2 |
| RSZone 1Road 02Irrigation NetworkA32630 |  | Zone 1 - Road 2 - Lateral Irrigation Network - HDPE Pipes 280 MM - Test | 1.9d | 2025-08-27 A | 2025-08-28 A | RSZone 1Road 02Irrigation NetworkA32620 | 100% |  |  |  |  | Contract Price Original Scope [10897.4 SAR]; Pump Operator [20 h]; Equipment Operator [20 h]; Labour [93.04 h]; HDPE Pipes 280 MM [324] | 10,897.42 | 10,897.42 | RD2 |
| RSZone 1Road 02Irrigation NetworkA32640 |  | Zone 1 - Road 2 - Lateral Irrigation Network - HDPE Pipes 280 MM - Backfilling | 5d | 2025-08-28 A | 2025-09-02 A | RSZone 1Road 02Irrigation NetworkA32630 | 100% | 2025-08-28 | 2025-09-03 |  |  | Contract Price Original Scope [10897.4 SAR]; Excavator Operator [20 h]; Compactor Operator [20 h]; Dump Truck Operator [20 h]; Water Truck Operator [20 h]; Labour [93.04 h]; HDPE Pipes 280 MM [324] | 10,897.42 | 10,897.42 | RD2 |
|  | 1 | **HDPE Fitting** |  | 2026-05-27 | 2026-11-26 |  |  |  |  |  |  |  |  |  |  |
|  | 1 | **Elbows** |  | 2026-05-27 | 2026-11-16 |  |  |  |  |  |  |  |  |  |  |
|  | 1 | **Elbows for Pipe 125 MM** |  | 2026-09-16 | 2026-11-16 |  |  |  |  |  |  |  |  |  |  |
| RSZone 1Road 02Irrigation NetworkA85940- |  | Zone 1 - Road 2 - Lateral Irrigation Network - Elbows for Pipe 125 MM - Installation (old) | 39d | 2026-09-16 A | 2026-11-01 A | RSZone 1Road 02Irrigation NetworkA32640, Pre Test.2-old | 100% |  |  |  |  | Contract Price Original Scope [1299.46 SAR]; Labour [11.09 h]; Fittings - Elbows (all sizes) [1] | 1,299.46 | 1,299.46 | RD2 |
| RSZone 1Road 02Irrigation NetworkA85940- |  | Zone 1 - Road 2 - Lateral Irrigation Network - Elbows for Pipe 125 MM - Installation (old) | 2.25d | 2026-11-14 | 2026-11-16 | RSZone 1Road 02Irrigation NetworkA85940-, Pre Test.2 |  |  |  | 0.64d | 0d | Contract Price Original Scope [3898.37 SAR]; Labour [33.28 h]; Fittings - Elbows (all sizes) [3] | 3,898.37 |  | RD2 |
|  | 2 | **Elbows for Pipe 160 MM** |  | 2026-05-27 | 2026-05-28 |  |  |  |  |  |  |  |  |  |  |
| RSZone 1Road 02Irrigation NetworkA85950 |  | Zone 1 - Road 2 - Lateral Irrigation Network - Elbows for Pipe 160 MM - Installation | 1.9d | 2026-05-27 A | 2026-05-28 A | RSZone 1Road 02Irrigation NetworkA32640 | 100% |  |  |  |  | Contract Price Original Scope [10395.7 SAR]; Labour [88.75 h]; Fittings - Elbows (all sizes) [8] | 10,395.66 | 10,395.66 | RD2 |
|  | 3 | **Elbows for Pipe 280 MM** |  | 2026-05-28 | 2026-05-31 |  |  |  |  |  |  |  |  |  |  |
| RSZone 1Road 02Irrigation NetworkA85960 |  | Zone 1 - Road 2 - Lateral Irrigation Network - Elbows for Pipe 280 MM - Installation | 3d | 2026-05-28 A | 2026-05-31 A | RSZone 1Road 02Irrigation NetworkA85950 | 100% | 2026-05-28 | 2026-06-01 |  |  | Contract Price Original Scope [7796.75 SAR]; Labour [66.56 h]; Fittings - Elbows (all sizes) [6] | 7,796.75 | 7,796.75 | RD2 |
|  | 2 | **Tees** |  | 2026-05-31 | 2026-11-23 |  |  |  |  |  |  |  |  |  |  |
|  | 2 | **Tees for Pipe 160 MM** |  | 2026-05-31 | 2026-06-01 |  |  |  |  |  |  |  |  |  |  |
| RSZone 1Road 02Irrigation NetworkA85970 |  | Zone 1 - Road 2 - Lateral Irrigation Network - Tees for Pipe 160 MM - Installation | 2d | 2026-05-31 A | 2026-06-01 A | RSZone 1Road 02Irrigation NetworkA85960 | 100% |  |  |  |  | Contract Price Original Scope [15360.6 SAR]; Labour [131.14 h]; Fittings - Tees (all sizes) [10] | 15,360.6 | 15,360.6 | RD2 |
|  | 4 | **Tees for Pipe 500 MM** |  | 2026-11-16 | 2026-11-19 |  |  |  |  |  |  |  |  |  |  |
| RSZone 1Road 02Irrigation NetworkA85980 |  | Zone 1 - Road 2 - Lateral Irrigation Network - Tees for Pipe 500 MM - Installation | 3d | 2026-11-16 | 2026-11-19 | RSZone 1Road 02Irrigation NetworkA85940- |  |  |  | 0.64d | 0d | Contract Price Original Scope [1536.06 SAR]; Labour [13.11 h]; Fittings - Tees (all sizes) [1] | 1,536.06 |  | RD2 |

| ID | WBS | Activity | Duration | Start | Finish | Predecessors | Complete | Total float | Free float | Resources | Cost | Actual cost | MODON |
| --- | --- | --- | --- | --- | --- | --- | --- | --- | --- | --- | --- | --- | --- |
|  | 1 | **Tees for Pipe 125 MM** |  | 2026-11-19 | 2026-11-23 |  |  |  |  |  |  |  |  |
| RSZone 1Road 02Irrigation NetworkA89080 |  | Zone 1 - Road 2 - Lateral Irrigation Network - Tees for Pipe 125 MM - Installation | 3d | 2026-11-19 | 2026-11-23 | RSZone 1Road 02Irrigation NetworkA85980 |  | 0.64d | 0d | Contract Price Original Scope [15360.6 SAR]; Labour [131.14 h]; Fittings - Tees (all sizes) [10] | 15,360.6 |  | RD2 |
|  | 3 | **Tees for Pipe 280 MM** |  | 2026-10-05 | 2026-11-09 |  |  |  |  |  |  |  |  |
| RSZone 1Road 02Irrigation NetworkA89090- |  | Zone 1 - Road 2 - Lateral Irrigation Network - Tees for Pipe 280 MM - Installation (old) | 24d | 2026-10-05 A | 2026-11-01 A | RSZone 1Road 02Irrigation NetworkA85970 | 100% |  |  | Contract Price Original Scope [10752.4 SAR]; Labour [91.8 h]; Fittings - Tees (all sizes) [7] | 10,752.42 | 10,752.42 | RD2 |
| RSZone 1Road 02Irrigation NetworkA89090- |  | Zone 1 - Road 2 - Lateral Irrigation Network - Tees for Pipe 280 MM - Installation (old) | 1d | 2026-11-09 | 2026-11-09 | RSZone 1Road 02Irrigation NetworkA89090- |  | 100.4d | 99.76d | Contract Price Original Scope [1536.06 SAR]; Labour [13.11 h]; Fittings - Tees (all sizes) [1] | 1,536.06 |  | RD2 |
|  | 5 | **End Cap for Pipe 125 MM** |  | 2026-07-13 | 2026-07-15 |  |  |  |  |  |  |  |  |
| RSZone 1Road 02Irrigation NetworkA89070 |  | Zone 1 - Road 2 - Lateral Irrigation Network - End Cap for Pipe 125 MM - Installation | 3d | 2026-07-13 A | 2026-07-15 A | RSZone 1Road 02Irrigation NetworkA85970 | 100% |  |  | Contract Price Original Scope [6724.63 SAR]; Labour [57.41 h]; Fittings - End Caps (all sizes) [18] | 6,724.63 | 6,724.63 | RD2 |
|  | 4 | **Reducer** |  | 2026-09-20 | 2026-11-26 |  |  |  |  |  |  |  |  |
|  | 1 | **Reducer for Pipe 160 MM** |  | 2026-09-20 | 2026-11-09 |  |  |  |  |  |  |  |  |
| RSZone 1Road 02Irrigation NetworkA85990- |  | Zone 1 - Road 2 - Lateral Irrigation Network - Reducer for Pipe 160 MM - Installation (old) | 36d | 2026-09-20 A | 2026-11-01 A | RSZone 1Road 02Irrigation NetworkA89070 | 100% |  |  | Contract Price Original Scope [8240.59 SAR]; Labour [70.35 h]; Fittings - Reducers (Connectors) (all sizes) [6] | 8,240.59 | 8,240.59 | RD2 |
| RSZone 1Road 02Irrigation NetworkA85990- |  | Zone 1 - Road 2 - Lateral Irrigation Network - Reducer for Pipe 160 MM - Installation (old) | 1d | 2026-11-09 | 2026-11-09 | RSZone 1Road 02Irrigation NetworkA85990- |  | 100.4d | 99.76d | Contract Price Original Scope [1372.54 SAR]; Labour [11.72 h]; Fittings - Reducers (Connectors) (all sizes) [1] | 1,372.54 |  | RD2 |
|  | 3 | **Reducer for Pipe 500 MM** |  | 2026-11-23 | 2026-11-26 |  |  |  |  |  |  |  |  |
| RSZone 1Road 02Irrigation NetworkA86000 |  | Zone 1 - Road 2 - Lateral Irrigation Network - Reducer for Pipe 500 MM - Installation | 3d | 2026-11-23 | 2026-11-26 | RSZone 1Road 02Irrigation NetworkA89080 |  | 0.64d | 0d | Contract Price Original Scope [5493.22 SAR]; Labour [46.9 h]; Fittings - Reducers (Connectors) (all sizes) [4] | 5,493.22 |  | RD2 |
|  | 11 | **Valves** |  | 2026-05-17 | 2026-12-13 |  |  |  |  |  |  |  |  |
|  | 1 | **Buried Valves** |  | 2026-05-17 | 2026-11-19 |  |  |  |  |  |  |  |  |
| RSZone 1Road 02Irrigation NetworkA29890- |  | Zone 1 - Road 2 - Lateral Irrigation Network - Buried Valves - Excavation (old) | 144d | 2026-05-17 A | 2026-11-01 A | RSZone 1Road 02Irrigation NetworkA89070 | 100% |  |  | Contract Price Original Scope [8005.89 SAR]; Excavator Operator [26.85 h]; Dump Truck Operator [26.85 h]; Labour [68.35 h]; Buried Valves [119.03] | 8,005.89 | 8,005.89 | RD2 |
| RSZone 1Road 02Irrigation NetworkA30470- |  | Zone 1 - Road 2 - Lateral Irrigation Network - Buried Valves - Installation (old) | 143d | 2026-05-18 A | 2026-11-01 A | RSZone 1Road 02Irrigation NetworkA29890- | 100% |  |  | Contract Price Original Scope [104077 SAR]; Labour [888.55 h]; Buried Valves [119.03] | 104,076.6 | 104,076.6 | RD2 |
| RSZone 1Road 02Irrigation NetworkA29890- |  | Zone 1 - Road 2 - Lateral Irrigation Network - Buried Valves - Excavation (old) | 1d | 2026-11-09 | 2026-11-09 | RSZone 1Road 02Irrigation NetworkA29890- |  | 92.3d | 0d | Contract Price Original Scope [939.24 SAR]; Excavator Operator [3.15 h]; Dump Truck Operator [3.15 h]; Labour [8.02 h]; Buried Valves [13.96] | 939.24 |  | RD2 |
| RSZone 1Road 02Irrigation NetworkA30470- |  | Zone 1 - Road 2 - Lateral Irrigation Network - Buried Valves - Installation (old) | 1d | 2026-11-10 | 2026-11-10 | RSZone 1Road 02Irrigation NetworkA30470-, RSZone 1Road 02Irrigation NetworkA29890- |  | 92.3d | 0d | Contract Price Original Scope [12210.1 SAR]; Labour [104.24 h]; Buried Valves [13.96] | 12,210.1 |  | RD2 |
| RSZone 1Road 02Irrigation NetworkA30480 |  | Zone 1 - Road 2 - Lateral Irrigation Network - Buried Valves - Surface Box | 3.1d | 2026-11-11 | 2026-11-15 | RSZone 1Road 02Irrigation NetworkA30470-, RSZone 1Road 02Irrigation NetworkA29890- |  | 92.3d | 0d | Labour; Buried Valves [133] |  |  | RD2 |
| RSZone 1Road 02Irrigation NetworkA30490 |  | Zone 1 - Road 2 - Lateral Irrigation Network - Buried Valves - Test | 2d | 2026-11-15 | 2026-11-17 | RSZone 1Road 02Irrigation NetworkA30480 |  | 92.3d | 0d | Contract Price Original Scope [35780.5 SAR]; Pump Operator [20 h]; Equipment Operator [20 h]; Labour [305.48 h]; Buried Valves [133] | 35,780.52 |  | RD2 |
| RSZone 1Road 02Irrigation NetworkA30500 |  | Zone 1 - Road 2 - Lateral Irrigation Network - Buried Valves - Backfilling | 2d | 2026-11-17 | 2026-11-19 | RSZone 1Road 02Irrigation NetworkA30490 |  | 92.3d | 91.66d | Contract Price Original Scope [17890.3 SAR]; Excavator Operator [20 h]; Compactor Operator [20 h]; Dump Truck Operator [20 h]; Water Truck Operator [20 h]; Labour [152.74 h]; Buried Valves [133] | 17,890.26 |  | RD2 |
|  | 4 | **Washout Valves** |  | 2026-11-26 | 2026-12-06 |  |  |  |  |  |  |  |  |
| RSZone 1Road 02Irrigation NetworkA30570 |  | Zone 1 - Road 2 - Lateral Irrigation Network - Washout Valves - Installation | 3d | 2026-11-26 | 2026-11-30 | RSZone 1Road 02Irrigation NetworkA86000 |  | 0.64d | 0d | Labour; Washout / Air / FlowMeter Valves [3] |  |  | RD2 |
| RSZone 1Road 02Irrigation NetworkA30580 |  | Zone 1 - Road 2 - Lateral Irrigation Network - Washout Valves - Surface Box | 3d | 2026-11-30 | 2026-12-03 | RSZone 1Road 02Irrigation NetworkA30570 |  | 0.64d | 0d | Labour; Washout / Air / FlowMeter Valves [3] |  |  | RD2 |
| RSZone 1Road 02Irrigation NetworkA30590 |  | Zone 1 - Road 2 - Lateral Irrigation Network - Washout Valves - Test | 2d | 2026-12-03 | 2026-12-06 | RSZone 1Road 02Irrigation NetworkA30580 |  | 77.74d | 77.1d | Pump Operator [20 h]; Equipment Operator [20 h]; Labour; Washout / Air / FlowMeter Valves [3] |  |  | RD2 |

| ID | WBS | Activity | Duration | Start | Finish | Predecessors | Complete | Total float | Free float | Resources | Cost | Actual cost | MODON |
| --- | --- | --- | --- | --- | --- | --- | --- | --- | --- | --- | --- | --- | --- |
|  | 2 | **Air Valves** |  | 2026-12-03 | 2026-12-13 |  |  |  |  |  |  |  |  |
| RSZone 1Road 02Irrigation NetworkA30630 |  | Zone 1 - Road 2 - Lateral Irrigation Network - Air Valves - Surface Box | 3d | 2026-12-03 | 2026-12-07 | RSZone 1Road 02Irrigation NetworkA30580 |  | 0.64d | 0d | Labour; Washout / Air / FlowMeter Valves [2] |  |  | RD2 |
| RSZone 1Road 02Irrigation NetworkA30620 |  | Zone 1 - Road 2 - Lateral Irrigation Network - Air Valves - Installation | 3d | 2026-12-07 | 2026-12-10 | RSZone 1Road 02Irrigation NetworkA30630 |  | 71.64d | 0d | Labour; Washout / Air / FlowMeter Valves [2] |  |  | RD2 |
| RSZone 1Road 02Irrigation NetworkA30640 |  | Zone 1 - Road 2 - Lateral Irrigation Network - Air Valves - Test | 2.1d | 2026-12-10 | 2026-12-13 | RSZone 1Road 02Irrigation NetworkA30620 |  | 71.64d | 71d | Pump Operator [20 h]; Equipment Operator [20 h]; Labour; Washout / Air / FlowMeter Valves [2] |  |  | RD2 |
|  | 2 | **Valve Champer** |  | 2025-07-29 | 2027-01-10 |  |  |  |  |  |  |  |  |
|  | 1 | **Isolation Champer** |  | 2026-12-07 | 2027-01-03 |  |  |  |  |  |  |  |  |
| RSZone 1Road 02Irrigation NetworkA30710 |  | Zone 1 - Road 2 - Lateral Irrigation Network - Isolation Champer - Excavation | 2.8d | 2026-12-07 | 2026-12-10 | RSZone 1Road 02Irrigation NetworkA30630 |  | 0.64d | 0d | Labour; Isolation Chambers |  |  | RD2 |
| RSZone 1Road 02Irrigation NetworkA30720 |  | Zone 1 - Road 2 - Lateral Irrigation Network - Isolation Champer - Footings | 3d | 2026-12-10 | 2026-12-14 | RSZone 1Road 02Irrigation NetworkA30710 |  | 54.3d | 0d | Labour; Isolation Chambers |  |  | RD2 |
| RSZone 1Road 02Irrigation NetworkA30740 |  | Zone 1 - Road 2 - Lateral Irrigation Network - Isolation Champer - Slab | 2.8d | 2026-12-14 | 2026-12-17 | RSZone 1Road 02Irrigation NetworkA30720 |  | 54.3d | 0d | Labour; Isolation Chambers |  |  | RD2 |
| RSZone 1Road 02Irrigation NetworkA30730 |  | Zone 1 - Road 2 - Lateral Irrigation Network - Isolation Champer - Walls | 3d | 2026-12-17 | 2026-12-21 | RSZone 1Road 02Irrigation NetworkA30740 |  | 54.3d | 0d | Labour; Isolation Chambers |  |  | RD2 |
| RSZone 1Road 02Irrigation NetworkA30760 |  | Zone 1 - Road 2 - Lateral Irrigation Network - Isolation Champer - Internal Isolation | 3d | 2026-12-21 | 2026-12-24 | RSZone 1Road 02Irrigation NetworkA30730 |  | 54.3d | 0d | Contract Price Original Scope [8496.44 SAR]; Labour [72.54 h]; Isolation Chambers [4] | 8,496.44 |  | RD2 |
| RSZone 1Road 02Irrigation NetworkA30750 |  | Zone 1 - Road 2 - Lateral Irrigation Network - Isolation Champer - D.I Cover | 3d | 2026-12-24 | 2026-12-28 | RSZone 1Road 02Irrigation NetworkA30760 |  | 54.3d | 0d | Contract Price Original Scope [16992.9 SAR]; Labour [145.08 h]; Isolation Chambers [4] | 16,992.89 |  | RD2 |
| RSZone 1Road 02Irrigation NetworkA30770 |  | Zone 1 - Road 2 - Lateral Irrigation Network - Isolation Champer - External Isolation | 2.84d | 2026-12-28 | 2026-12-31 | RSZone 1Road 02Irrigation NetworkA30750 |  | 54.3d | 0d | Labour; Isolation Chambers |  |  | RD2 |
| RSZone 1Road 02Irrigation NetworkA30780 |  | Zone 1 - Road 2 - Lateral Irrigation Network - Isolation Champer - Backfilling | 2d | 2026-12-31 | 2027-01-03 | RSZone 1Road 02Irrigation NetworkA30770 |  | 54.3d | 53.66d | Excavator Operator [20 h]; Compactor Operator [20 h]; Dump Truck Operator [20 h]; Water Truck Operator [20 h]; Labour; Isolation Chambers |  |  | RD2 |
|  | 2 | **Air Valves Champer** |  | 2025-07-29 | 2026-11-17 |  |  |  |  |  |  |  |  |
| RSZone 1Road 02Irrigation NetworkA30790 |  | Zone 1 - Road 2 - Lateral Irrigation Network - Air Valves Champer - Excavation | 6d | 2025-07-29 A | 2025-08-04 A | RSZone 1Road 02Irrigation NetworkA89070 | 100% |  |  | Contract Price Original Scope [3458.31 SAR]; Labour [29.53 h]; Air Valve Chambers [3] | 3,458.31 | 3,458.31 | RD2 |
| RSZone 1Road 02Irrigation NetworkA30800 |  | Zone 1 - Road 2 - Lateral Irrigation Network - Air Valves Champer - Footings | 2.9d | 2025-08-05 A | 2025-08-07 A | RSZone 1Road 02Irrigation NetworkA30790 | 100% |  |  | Contract Price Original Scope [10374.9 SAR]; Labour [88.58 h]; Air Valve Chambers [3] | 10,374.94 | 10,374.94 | RD2 |
| RSZone 1Road 02Irrigation NetworkA30810 |  | Zone 1 - Road 2 - Lateral Irrigation Network - Air Valves Champer - Walls | 4.9d | 2025-08-10 A | 2025-08-14 A | RSZone 1Road 02Irrigation NetworkA30800 | 100% |  |  | Contract Price Original Scope [13833.2 SAR]; Labour [118.1 h]; Air Valve Chambers [3] | 13,833.25 | 13,833.25 | RD2 |
| RSZone 1Road 02Irrigation NetworkA30840 |  | Zone 1 - Road 2 - Lateral Irrigation Network - Air Valves Champer - Internal Isolation | 2d | 2025-08-17 A | 2025-08-18 A | RSZone 1Road 02Irrigation NetworkA30810 | 100% |  |  | Contract Price Original Scope [3458.31 SAR]; Labour [29.53 h]; Air Valve Chambers [3] | 3,458.31 | 3,458.31 | RD2 |
| RSZone 1Road 02Irrigation NetworkA30850 |  | Zone 1 - Road 2 - Lateral Irrigation Network - Air Valves Champer - External Isolation | 2d | 2025-08-19 A | 2025-08-20 A | RSZone 1Road 02Irrigation NetworkA30840 | 100% |  |  | Contract Price Original Scope [3458.31 SAR]; Labour [29.53 h]; Air Valve Chambers [3] | 3,458.31 | 3,458.31 | RD2 |
| RSZone 1Road 02Irrigation NetworkA30820 |  | Zone 1 - Road 2 - Lateral Irrigation Network - Air Valves Champer - Slab | 3d | 2026-11-09 | 2026-11-11 | RSZone 1Road 02Irrigation NetworkA30850 |  | 93.4d | 0d | Contract Price Original Scope [24208.2 SAR]; Labour [206.68 h]; Air Valve Chambers [3] | 24,208.19 |  | RD2 |
| RSZone 1Road 02Irrigation NetworkA30830 |  | Zone 1 - Road 2 - Lateral Irrigation Network - Air Valves Champer - D.I Cover | 3d | 2026-11-12 | 2026-11-15 | RSZone 1Road 02Irrigation NetworkA30820 |  | 93.4d | 0d | Contract Price Original Scope [6916.63 SAR]; Labour [59.05 h]; Air Valve Chambers [3] | 6,916.63 |  | RD2 |
| RSZone 1Road 02Irrigation NetworkA30860 |  | Zone 1 - Road 2 - Lateral Irrigation Network - Air Valves Champer - Backfilling | 2d | 2026-11-16 | 2026-11-17 | RSZone 1Road 02Irrigation NetworkA30830 |  | 93.4d | 92.76d | Contract Price Original Scope [3458.31 SAR]; Excavator Operator [20 h]; Compactor Operator [20 h]; Dump Truck Operator [20 h]; Water Truck Operator [20 h]; Labour [29.53 h]; Air Valve Chambers [3] | 3,458.31 |  | RD2 |
|  | 3 | **Washout Valves Champer** |  | 2026-12-10 | 2027-01-06 |  |  |  |  |  |  |  |  |
| RSZone 1Road 02Irrigation NetworkA30870 |  | Zone 1 - Road 2 - Lateral Irrigation Network - Washout Valves Champer - Excavation | 3d | 2026-12-10 | 2026-12-14 | RSZone 1Road 02Irrigation NetworkA30710 |  | 0.64d | 0d | Contract Price Original Scope [4989.07 SAR]; Labour [42.59 h]; Washout Chambers [3] | 4,989.07 |  | RD2 |
| RSZone 1Road 02Irrigation NetworkA30880 |  | Zone 1 - Road 2 - Lateral Irrigation Network - Washout Valves Champer - Footings | 3d | 2026-12-14 | 2026-12-17 | RSZone 1Road 02Irrigation NetworkA30870 |  | 50.94d | 0d | Contract Price Original Scope [14967.2 SAR]; Labour [127.78 h]; Washout Chambers [3] | 14,967.2 |  | RD2 |
| RSZone 1Road 02Irrigation NetworkA30900 |  | Zone 1 - Road 2 - Lateral Irrigation Network - Washout Valves Champer - Slab | 3d | 2026-12-17 | 2026-12-21 | RSZone 1Road 02Irrigation NetworkA30880 |  | 50.94d | 0d | Contract Price Original Scope [34923.5 SAR]; Labour [298.16 h]; Washout Chambers [3] | 34,923.47 |  | RD2 |
| RSZone 1Road 02Irrigation NetworkA30890 |  | Zone 1 - Road 2 - Lateral Irrigation Network - Washout Valves Champer - Walls | 3d | 2026-12-21 | 2026-12-24 | RSZone 1Road 02Irrigation NetworkA30900 |  | 50.94d | 0d | Contract Price Original Scope [19956.3 SAR]; Labour [170.38 h]; Washout Chambers [3] | 19,956.27 |  | RD2 |
| RSZone 1Road 02Irrigation NetworkA30920 |  | Zone 1 - Road 2 - Lateral Irrigation Network - Washout Valves Champer - Internal Isolation | 3d | 2026-12-24 | 2026-12-28 | RSZone 1Road 02Irrigation NetworkA30890 |  | 50.94d | 0d | Contract Price Original Scope [4989.07 SAR]; Labour [42.59 h]; Washout Chambers [3] | 4,989.07 |  | RD2 |
| RSZone 1Road 02Irrigation NetworkA30910 |  | Zone 1 - Road 2 - Lateral Irrigation Network - Washout Valves Champer - D.I Cover | 3d | 2026-12-28 | 2026-12-31 | RSZone 1Road 02Irrigation NetworkA30920 |  | 50.94d | 0d | Contract Price Original Scope [9978.13 SAR]; Labour [85.19 h]; Washout Chambers [3] | 9,978.13 |  | RD2 |
| RSZone 1Road 02Irrigation NetworkA30930 |  | Zone 1 - Road 2 - Lateral Irrigation Network - Washout Valves Champer - External Isolation | 3d | 2026-12-31 | 2027-01-04 | RSZone 1Road 02Irrigation NetworkA30910 |  | 50.94d | 0d | Contract Price Original Scope [4989.07 SAR]; Labour [42.59 h]; Washout Chambers [3] | 4,989.07 |  | RD2 |
| RSZone 1Road 02Irrigation NetworkA30940 |  | Zone 1 - Road 2 - Lateral Irrigation Network - Washout Valves Champer - Backfilling | 2d | 2027-01-04 | 2027-01-06 | RSZone 1Road 02Irrigation NetworkA30930 |  | 50.94d | 50.3d | Contract Price Original Scope [4989.07 SAR]; Excavator Operator [20 h]; Compactor Operator [20 h]; Dump Truck Operator [20 h]; Water Truck Operator [20 h]; Labour [42.59 h]; Washout Chambers [3] | 4,989.07 |  | RD2 |

| ID | WBS | Activity | Duration | Start | Finish | Predecessors | Complete | Planned start | Planned finish | Total float | Free float | Resources | Cost | Actual cost | MODON |
| --- | --- | --- | --- | --- | --- | --- | --- | --- | --- | --- | --- | --- | --- | --- | --- |
|  | 4 | **FlowMeter Valves Champer** |  | 2026-12-14 | 2027-01-10 |  |  |  |  |  |  |  |  |  |  |
| RSZone 1Road 02Irrigation NetworkA30950 |  | Zone 1 - Road 2 - Lateral Irrigation Network - FlowMeter Valves Champer - Excavation | 3d | 2026-12-14 | 2026-12-17 | RSZone 1Road 02Irrigation NetworkA30870 |  |  |  | 0.64d | 0d | Contract Price Original Scope [1692.01 SAR]; Labour [14.45 h]; FlowMeter Chambers [1] | 1,692.01 |  | RD2 |
| RSZone 1Road 02Irrigation NetworkA30960 |  | Zone 1 - Road 2 - Lateral Irrigation Network - FlowMeter Valves Champer - Footings | 3d | 2026-12-17 | 2026-12-21 | RSZone 1Road 02Irrigation NetworkA30950 |  |  |  | 47.94d | 0d | Contract Price Original Scope [5076.04 SAR]; Labour [43.34 h]; FlowMeter Chambers [1] | 5,076.04 |  | RD2 |
| RSZone 1Road 02Irrigation NetworkA30980 |  | Zone 1 - Road 2 - Lateral Irrigation Network - FlowMeter Valves Champer - Slab | 3d | 2026-12-21 | 2026-12-24 | RSZone 1Road 02Irrigation NetworkA30960 |  |  |  | 47.94d | 0d | Contract Price Original Scope [35532.2 SAR]; Labour [303.36 h]; FlowMeter Chambers [3] | 35,532.25 |  | RD2 |
| RSZone 1Road 02Irrigation NetworkA30970 |  | Zone 1 - Road 2 - Lateral Irrigation Network - FlowMeter Valves Champer - Walls | 3d | 2026-12-24 | 2026-12-28 | RSZone 1Road 02Irrigation NetworkA30980 |  |  |  | 47.94d | 0d | Contract Price Original Scope [6768.05 SAR]; Labour [57.78 h]; FlowMeter Chambers [1] | 6,768.05 |  | RD2 |
| RSZone 1Road 02Irrigation NetworkA31000 |  | Zone 1 - Road 2 - Lateral Irrigation Network - FlowMeter Valves Champer - Internal Isolation | 3d | 2026-12-28 | 2026-12-31 | RSZone 1Road 02Irrigation NetworkA30970 |  |  |  | 47.94d | 0d | Contract Price Original Scope [8460.06 SAR]; Labour [72.23 h]; FlowMeter Chambers [5] | 8,460.06 |  | RD2 |
| RSZone 1Road 02Irrigation NetworkA30990 |  | Zone 1 - Road 2 - Lateral Irrigation Network - FlowMeter Valves Champer - D.I Cover | 3d | 2026-12-31 | 2027-01-04 | RSZone 1Road 02Irrigation NetworkA31000 |  |  |  | 47.94d | 0d | Contract Price Original Scope [16920.1 SAR]; Labour [144.46 h]; FlowMeter Chambers [5] | 16,920.12 |  | RD2 |
| RSZone 1Road 02Irrigation NetworkA31010 |  | Zone 1 - Road 2 - Lateral Irrigation Network - FlowMeter Valves Champer - External Isolation | 3d | 2027-01-04 | 2027-01-07 | RSZone 1Road 02Irrigation NetworkA30990 |  |  |  | 47.94d | 0d | Contract Price Original Scope [1692.01 SAR]; Labour [14.45 h]; FlowMeter Chambers [1] | 1,692.01 |  | RD2 |
| RSZone 1Road 02Irrigation NetworkA31020 |  | Zone 1 - Road 2 - Lateral Irrigation Network - FlowMeter Valves Champer - Backfilling | 2d | 2027-01-07 | 2027-01-10 | RSZone 1Road 02Irrigation NetworkA31010 |  |  |  | 47.94d | 47.3d | Contract Price Original Scope [1692.01 SAR]; Excavator Operator [20 h]; Compactor Operator [20 h]; Dump Truck Operator [20 h]; Water Truck Operator [20 h]; Labour [14.45 h]; FlowMeter Chambers [1] | 1,692.01 |  | RD2 |
|  | 3 | **Bedding** |  | 2025-07-31 | 2025-08-04 |  |  |  |  |  |  |  |  |  |  |
| RSZone 1Road 02Irrigation NetworkA31030 |  | Zone 1 - Road 2 - Lateral Irrigation Network - Bedding - Bedding | 4d | 2025-07-31 A | 2025-08-04 A | RSZone 1Road 02Irrigation NetworkA30850 | 100% | 2025-07-31 | 2025-08-05 |  |  | Contract Price Original Scope [28405.5 SAR]; Compactor Operator [20 h]; Equipment Operator [20 h]; Water Truck Operator [20 h]; Labour [242.51 h]; Bedding [1103] | 28,405.5 | 28,405.5 | RD2 |
|  | 4 | **Thrust Block** |  | 2026-05-17 | 2026-11-09 |  |  |  |  |  |  |  |  |  |  |
| RSZone 1Road 02Irrigation NetworkA31040- |  | Zone 1 - Road 2 - Lateral Irrigation Network - Thrust Block - Thrust Block (old) | 144d | 2026-05-17 A | 2026-11-01 A | RSZone 1Road 02Irrigation NetworkA31030 | 100% |  |  |  |  | Contract Price Original Scope [32682.1 SAR]; Crane Operator [8.17 h]; Pump Operator [8.17 h]; Equipment Operator [8.17 h]; Labour [279.02 h]; Thrust Blocks [31.99] | 32,682.13 | 32,682.13 | RD2 |
| RSZone 1Road 02Irrigation NetworkA31040- |  | Zone 1 - Road 2 - Lateral Irrigation Network - Thrust Block - Thrust Block (old) | 1d | 2026-11-09 | 2026-11-09 | RSZone 1Road 02Irrigation NetworkA31040- |  |  |  | 100.4d | 99.76d | Contract Price Original Scope [15340.6 SAR]; Crane Operator [3.83 h]; Pump Operator [3.83 h]; Equipment Operator [3.83 h]; Labour [130.97 h]; Thrust Blocks [15.01] | 15,340.59 |  | RD2 |
|  | 20 | **Road Crossing** |  | 2025-09-29 | 2026-11-09 |  |  |  |  |  |  |  |  |  |  |
| RSZone 1Road 02Road CrossingA29870 |  | Zone 1 - Road 2 - Road Crossing - Rood Crossing UPVC Selves 300 mm | 3.9d | 2025-09-29 A | 2025-10-02 A | Engineering Approval.5 | 100% |  |  |  |  | Contract Price Original Scope [40176.5 SAR]; Excavator Operator [150 h]; Crane Operator [150 h]; Equipment Operator [150 h]; Labour [343.01 h]; Road Crossing Sleeves 300 mm [94] | 40,176.54 | 40,176.54 | RD2 |
| RSZone 1Road 02Road CrossingA29880-old |  | Zone 1 - Road 2 - Road Crossing - Rood Crossing UPVC Selves 600 mm (old) | 149d | 2026-05-11 A | 2026-11-01 A | RSZone 1Road 24Road CrossingA21830 | 100% |  |  |  |  | Contract Price Original Scope [269441 SAR]; Excavator Operator [140.85 h]; Crane Operator [140.85 h]; Equipment Operator [140.85 h]; Labour [2300.35 h]; Road Crossing Sleeves 600 mm [200.01] | 269,441.43 | 269,441.43 | RD2 |
| RSZone 1Road 02Road CrossingA29880 |  | Zone 1 - Road 2 - Road Crossing - Rood Crossing UPVC Selves 600 mm | 1d | 2026-11-09 | 2026-11-09 | RSZone 1Road 02Road CrossingA29880-old |  |  |  | 0.21d | 0d | Contract Price Original Scope [17503.7 SAR]; Excavator Operator [9.15 h]; Crane Operator [9.15 h]; Equipment Operator [9.15 h]; Labour [149.44 h]; Road Crossing Sleeves 600 mm [12.99] | 17,503.65 |  | RD2 |
|  | 12 | **Telecom Network** |  | 2026-05-17 | 2026-11-15 |  |  |  |  |  |  |  |  |  |  |
|  | 2 | **Telecom Pipe** |  | 2026-09-06 | 2026-11-15 |  |  |  |  |  |  |  |  |  |  |
| RSZone 1Road 02Telecom NetworkA85260-old |  | Zone 1 - Road 2 - Telecom Network - Telecom Pipe - Excavation (old) | 48d | 2026-09-06 A | 2026-11-01 A | Engineering Approval.6 | 100% |  |  |  |  | Contract Price Original Scope [48212.4 SAR]; Excavator Operator [14.43 h]; Dump Truck Operator [14.43 h]; Labour [411.61 h]; Telecom Pipe [2237.17] | 48,212.43 | 48,212.43 | RD2 |
| RSZone 1Road 02Telecom NetworkA85270-old |  | Zone 1 - Road 2 - Telecom Network - Telecom Pipe - Concrete Pouring (old) | 47d | 2026-09-07 A | 2026-11-01 A | RSZone 1Road 02Telecom NetworkA85260-old | 100% |  |  |  |  | Contract Price Original Scope [238000 SAR]; Crane Operator [4.75 h]; Pump Operator [4.75 h]; Equipment Operator [4.75 h]; Labour [2031.92 h]; Telecom Pipe [1577.68] | 238,000.16 | 238,000.16 | RD2 |
| RSZone 1Road 02Telecom NetworkA85290-old |  | Zone 1 - Road 2 - Telecom Network - Telecom Pipe - Backfilling (old) | 45d | 2026-09-09 A | 2026-11-01 A | RSZone 1Road 02Telecom NetworkA85270-old | 100% |  |  |  |  | Contract Price Original Scope [33988.1 SAR]; Excavator Operator [6.78 h]; Compactor Operator [6.78 h]; Dump Truck Operator [6.78 h]; Water Truck Operator [6.78 h]; Labour [290.17 h]; Telecom Pipe [1577.12] | 33,988.09 | 33,988.09 | RD2 |
| RSZone 1Road 02Telecom NetworkA85260 |  | Zone 1 - Road 2 - Telecom Network - Telecom Pipe - Excavation | 1.56d | 2026-11-09 | 2026-11-10 | RSZone 1Road 02Telecom NetworkA85260-old |  |  |  | 100.52d | 0d | Contract Price Original Scope [51998.2 SAR]; Excavator Operator [15.57 h]; Dump Truck Operator [15.57 h]; Labour [443.93 h]; Telecom Pipe [2412.83] | 51,998.16 |  | RD2 |
| RSZone 1Road 02Telecom NetworkA85270 |  | Zone 1 - Road 2 - Telecom Network - Telecom Pipe - Concrete Pouring | 1d | 2026-11-10 | 2026-11-11 | RSZone 1Road 02Telecom NetworkA85270-old, RSZone 1Road 02Telecom NetworkA85260 |  |  |  | 100.52d | 0d | Contract Price Original Scope [463474 SAR]; Crane Operator [9.25 h]; Pump Operator [9.25 h]; Equipment Operator [9.25 h]; Labour [3956.9 h]; Telecom Pipe [3072.32] | 463,473.99 |  | RD2 |
| RSZone 1Road 02Telecom NetworkA85290 |  | Zone 1 - Road 2 - Telecom Network - Telecom Pipe - Backfilling | 1.32d | 2026-11-11 | 2026-11-12 | RSZone 1Road 02Telecom NetworkA85290-old, RSZone 1Road 02Telecom NetworkA85270 |  |  |  | 100.52d | 0d | Contract Price Original Scope [66222.5 SAR]; Excavator Operator [13.22 h]; Compactor Operator [13.22 h]; Dump Truck Operator [13.22 h]; Water Truck Operator [13.22 h]; Labour [565.37 h]; Telecom Pipe [3072.88] | 66,222.5 |  | RD2 |
| RSZone 1Road 02Telecom NetworkA85280 |  | Zone 1 - Road 2 - Telecom Network - Telecom Pipe - Test | 2d | 2026-11-12 | 2026-11-15 | RSZone 1Road 02Telecom NetworkA85290, RSZone 1Road 02Telecom NetworkA85270 |  |  |  | 100.52d | 100.12d | Contract Price Original Scope [100211 SAR]; Pump Operator [20 h]; Equipment Operator [20 h]; Labour [855.55 h]; Telecom Pipe [4650] | 100,210.59 |  | RD2 |

| ID | WBS | Activity | Duration | Start | Finish | Predecessors | Complete | Total float | Free float | Resources | Cost | Actual cost | MODON |
| --- | --- | --- | --- | --- | --- | --- | --- | --- | --- | --- | --- | --- | --- |
|  | 12 | **Telecom Duct** |  | 2026-05-17 | 2026-11-12 |  |  |  |  |  |  |  |  |
| RSZone 1Road 02Telecom NetworkA85300 |  | Zone 1 - Road 2 - Telecom Network - Telecom Duct - Excavation | 4.9d | 2026-05-17 A | 2026-05-21 A | Engineering Approval.6 | 100% |  |  | Contract Price Original Scope [16370.1 SAR]; Excavator Operator [30 h]; Dump Truck Operator [30 h]; Labour [139.76 h]; Telecom Duct (Road Crossing) [752] | 16,370.08 | 16,370.08 | RD2 |
| RSZone 1Road 02Telecom NetworkA85310 |  | Zone 1 - Road 2 - Telecom Network - Telecom Duct - Concrete Pouring | 2d | 2026-05-24 A | 2026-05-25 A | RSZone 1Road 02Telecom NetworkA85300, RSZone 1Road 02Telecom NetworkA85300 FF | 100% |  |  | Contract Price Original Scope [229181 SAR]; Crane Operator [13 h]; Pump Operator [13 h]; Equipment Operator [13 h]; Labour [1956.63 h]; Telecom Duct (Road Crossing) [752] | 229,181.14 | 229,181.14 | RD2 |
| RSZone 1Road 02Telecom NetworkA85320 |  | Zone 1 - Road 2 - Telecom Network - Telecom Duct - Test | 2d | 2026-11-09 | 2026-11-10 | RSZone 1Road 02Telecom NetworkA85310 |  | 102.4d | 0d | Contract Price Original Scope [32740.2 SAR]; Pump Operator [20 h]; Equipment Operator [20 h]; Labour [279.52 h]; Telecom Duct (Road Crossing) [752] | 32,740.16 |  | RD2 |
| RSZone 1Road 02Telecom NetworkA85330 |  | Zone 1 - Road 2 - Telecom Network - Telecom Duct - Backfilling | 2d | 2026-11-11 | 2026-11-12 | RSZone 1Road 02Telecom NetworkA85320 |  | 102.4d | 102d | Contract Price Original Scope [49110.2 SAR]; Excavator Operator [20 h]; Compactor Operator [20 h]; Dump Truck Operator [20 h]; Water Truck Operator [20 h]; Labour [419.28 h]; Telecom Duct (Road Crossing) [752] | 49,110.24 |  | RD2 |
|  | 1 | **TELECOM MANHOLE** |  | 2026-09-15 | 2026-11-09 |  |  |  |  |  |  |  |  |
| RSZone 1Road 02Telecom NetworkA85340-old |  | Zone 1 - Road 2 - Telecom Network - TELECOM MANHOLE - Manhole Installation (old) | 40d | 2026-09-15 A | 2026-11-01 A | RSZone 1Road 02Telecom NetworkA85310 | 100% |  |  | Contract Price Original Scope [855460 SAR]; Crane Operator [12.35 h]; Boom Truck Operator [12.35 h]; Equipment Operator [12.35 h]; Labour [7303.47 h]; Telecom Manhole [57] | 855,459.99 | 855,459.99 | RD2 |
| RSZone 1Road 02Telecom NetworkA85340 |  | Zone 1 - Road 2 - Telecom Network - TELECOM MANHOLE - Manhole Installation | 1d | 2026-11-09 | 2026-11-09 | RSZone 1Road 02Telecom NetworkA85340-old |  | 94.43d | 0d | Contract Price Original Scope [45024.2 SAR]; Crane Operator [0.65 h]; Boom Truck Operator [0.65 h]; Equipment Operator [0.65 h]; Labour [384.39 h]; Telecom Manhole [3] | 45,024.21 |  | RD2 |
|  | 1 | **Main Road** |  | 2026-09-21 | 2026-12-13 |  |  |  |  |  |  |  |  |
| RSZone 1Road 02Main RoadA86130-old |  | Zone 1 - Road 2 - Main Road - Pre-Cast Cerb (old) | 35d | 2026-09-21 A | 2026-11-01 A | Engineering Approval.7, RSZone 1Road 09Main RoadA32680-old | 100% |  |  | Contract Price Original Scope [90210.8 SAR]; Compactor Operator [98.14 h]; Equipment Operator [98.14 h]; Water Truck Operator [98.14 h]; Labour [770.17 h]; Main Road - Curbstone [1136.86] | 90,210.83 | 90,210.83 | RD2 |
| RSZone 1Road 02Main RoadA86130 |  | Zone 1 - Road 2 - Main Road - Pre-Cast Cerb | 14.35d | 2026-11-25 | 2026-12-13 | RSZone 1Road 02Main RoadA86130-old, RSZone 1Road 09Main RoadA32680 |  | 101.72d | 0d | Contract Price Original Scope [194737 SAR]; Compactor Operator [211.86 h]; Equipment Operator [211.86 h]; Water Truck Operator [211.86 h]; Labour [1662.56 h]; Main Road - Curbstone [2454.14] | 194,736.9 |  | RD2 |
|  | 19 | **Road 9** |  | 2025-08-03 | 2027-03-27 |  |  |  |  |  |  |  |  |
|  | 6 | **Storm Network** |  | 2025-09-21 | 2026-11-25 |  |  |  |  |  |  |  |  |
|  | 1 | **Collection Pipes 150 MM** |  | 2026-07-06 | 2026-11-12 |  |  |  |  |  |  |  |  |
| RSZone 1Road 09Storm NetworkA88270 |  | Zone 1 - Road 9 - Storm Network - Collection Pipes 150 MM - Excavation | 3.9d | 2026-07-06 A | 2026-07-09 A | RSZone 1Road 02Storm NetworkA85850, Pre Test.5 | 100% |  |  | Contract Price Original Scope [2724.07 SAR]; Excavator Operator [30 h]; Dump Truck Operator [30 h]; Labour [23.26 h]; Collection Pipes 150 MM [570] | 2,724.07 | 2,724.07 | RD9 |
| RSZone 1Road 09Storm NetworkA88280 |  | Zone 1 - Road 9 - Storm Network - Collection Pipes 150 MM - Bedding | 2d | 2026-07-12 A | 2026-07-13 A | RSZone 1Road 09Storm NetworkA88270 | 100% |  |  | Contract Price Original Scope [1362.04 SAR]; Compactor Operator [20 h]; Equipment Operator [20 h]; Water Truck Operator [20 h]; Labour [11.63 h]; Collection Pipes 150 MM [570] | 1,362.04 | 1,362.04 | RD9 |
| RSZone 1Road 09Storm NetworkA88290 |  | Zone 1 - Road 9 - Storm Network - Collection Pipes 150 MM - Pipe Installation | 6d | 2026-07-13 A | 2026-07-19 A | RSZone 1Road 09Storm NetworkA88280 | 100% |  |  | Contract Price Original Scope [17706.5 SAR]; Excavator Operator [40 h]; Crane Operator [40 h]; Equipment Operator [40 h]; Labour [151.17 h]; Collection Pipes 150 MM [570] | 17,706.45 | 17,706.45 | RD9 |
| RSZone 1Road 09Storm NetworkA88300 |  | Zone 1 - Road 9 - Storm Network - Collection Pipes 150 MM - Test | 2d | 2026-11-09 | 2026-11-10 | RSZone 1Road 09Storm NetworkA88290 |  | 121.4d | 0d | Contract Price Original Scope [2724.07 SAR]; Pump Operator [20 h]; Equipment Operator [20 h]; Labour [23.26 h]; Collection Pipes 150 MM [570] | 2,724.07 |  | RD9 |
| RSZone 1Road 09Storm NetworkA88310 |  | Zone 1 - Road 9 - Storm Network - Collection Pipes 150 MM - Backfilling | 2d | 2026-11-11 | 2026-11-12 | RSZone 1Road 09Storm NetworkA88300 |  | 121.4d | 107d | Contract Price Original Scope [2724.07 SAR]; Excavator Operator [20 h]; Compactor Operator [20 h]; Dump Truck Operator [20 h]; Water Truck Operator [20 h]; Labour [23.26 h]; Collection Pipes 150 MM [570] | 2,724.07 |  | RD9 |
|  | 2 | **Gullies & Catchbasin Pipes** |  | 2026-05-24 | 2026-11-22 |  |  |  |  |  |  |  |  |
| RSZone 1Road 09Storm NetworkA37990-old |  | Zone 1 - Road 9 - Storm Network - Gullies & Catchbasin Pipes - Excavation (old) | 138d | 2026-05-24 A | 2026-11-01 A | RSZone 1Road 02Storm NetworkA85780-old | 100% |  |  | Contract Price Original Scope [47103.3 SAR]; Excavator Operator [22.31 h]; Dump Truck Operator [22.31 h]; Labour [402.14 h]; Gullies & Catchbasin Pipes (300 mm) [1175.74] | 47,103.35 | 47,103.35 | RD9 |
| RSZone 1Road 09Storm NetworkA38000-old |  | Zone 1 - Road 9 - Storm Network - Gullies & Catchbasin Pipes - Bedding (old) | 137d | 2026-05-25 A | 2026-11-01 A | RSZone 1Road 09Storm NetworkA37990-old | 100% |  |  | Contract Price Original Scope [134063 SAR]; Compactor Operator [14.08 h]; Equipment Operator [14.08 h]; Water Truck Operator [14.08 h]; Labour [1144.56 h]; Gullies & Catchbasin Pipes - Bedding [1112.85] | 134,063.38 | 134,063.38 | RD9 |
| RSZone 1Road 09Storm NetworkA38010-old |  | Zone 1 - Road 9 - Storm Network - Gullies & Catchbasin Pipes - Pipe Installation (old) | 135d | 2026-05-27 A | 2026-11-01 A | RSZone 1Road 09Storm NetworkA38000-old | 100% |  |  | Contract Price Original Scope [312136 SAR]; Excavator Operator [28.16 h]; Crane Operator [28.16 h]; Equipment Operator [28.16 h]; Labour [2664.86 h]; Gullies & Catchbasin Pipes (300 mm) [1113.02] | 312,136.22 | 312,136.22 | RD9 |
| RSZone 1Road 09Storm NetworkA37990 |  | Zone 1 - Road 9 - Storm Network - Gullies & Catchbasin Pipes - Excavation | 1.28d | 2026-11-12 | 2026-11-15 | RSZone 1Road 09Storm NetworkA37990-old, RSZone 1Road 02Storm NetworkA85780 |  | 111.3d | 0d | Contract Price Original Scope [16236 SAR]; Excavator Operator [7.69 h]; Dump Truck Operator [7.69 h]; Labour [138.61 h]; Gullies & Catchbasin Pipes (300 mm) [405.26] | 16,235.98 |  | RD9 |
| RSZone 1Road 09Storm NetworkA38000 |  | Zone 1 - Road 9 - Storm Network - Gullies & Catchbasin Pipes - Bedding | 1d | 2026-11-15 | 2026-11-16 | RSZone 1Road 09Storm NetworkA38000-old, RSZone 1Road 09Storm NetworkA37990 |  | 111.3d | 0d | Contract Price Original Scope [56397.6 SAR]; Compactor Operator [5.92 h]; Equipment Operator [5.92 h]; Water Truck Operator [5.92 h]; Labour [481.49 h]; Gullies & Catchbasin Pipes - Bedding [468.15] | 56,397.62 |  | RD9 |
| RSZone 1Road 09Storm NetworkA38010 |  | Zone 1 - Road 9 - Storm Network - Gullies & Catchbasin Pipes - Pipe Installation | 1.48d | 2026-11-16 | 2026-11-17 | RSZone 1Road 09Storm NetworkA38010-old, RSZone 1Road 09Storm NetworkA38000 |  | 111.3d | 0d | Contract Price Original Scope [131239 SAR]; Excavator Operator [11.84 h]; Crane Operator [11.84 h]; Equipment Operator [11.84 h]; Labour [1120.45 h]; Gullies & Catchbasin Pipes (300 mm) [467.98] | 131,239.09 |  | RD9 |
| RSZone 1Road 09Storm NetworkA38020 |  | Zone 1 - Road 9 - Storm Network - Gullies & Catchbasin Pipes - Test | 2d | 2026-11-17 | 2026-11-19 | RSZone 1Road 09Storm NetworkA38010, RSZone 1Road 09Storm NetworkA37990, RSZone 1Road 09Storm NetworkA38000 |  | 113.82d | 0d | Contract Price Original Scope [63339.3 SAR]; Pump Operator [20 h]; Equipment Operator [20 h]; Labour [540.76 h]; Gullies & Catchbasin Pipes (300 mm) [1581] | 63,339.33 |  | RD9 |
| RSZone 1Road 09Storm NetworkA38030 |  | Zone 1 - Road 9 - Storm Network - Gullies & Catchbasin Pipes - Backfilling | 2d | 2026-11-19 | 2026-11-22 | RSZone 1Road 09Storm NetworkA38020 |  | 113.82d | 99.41d | Contract Price Original Scope [63339.3 SAR]; Excavator Operator [20 h]; Compactor Operator [20 h]; Dump Truck Operator [20 h]; Water Truck Operator [20 h]; Labour [540.76 h]; Gullies & Catchbasin Pipes (300 mm) [1581] | 63,339.33 |  | RD9 |

| ID | WBS | Activity | Duration | Start | Finish | Predecessors | Complete | Planned start | Planned finish | Total float | Free float | Resources | Cost | Actual cost | MODON |
| --- | --- | --- | --- | --- | --- | --- | --- | --- | --- | --- | --- | --- | --- | --- | --- |
|  | 8 | **Perforated 200 mm** |  | 2025-10-14 | 2026-11-10 |  |  |  |  |  |  |  |  |  |  |
| RSZone 1Road 09Storm NetworkA51190 |  | Zone 1 - Road 9 - Storm Network - Perforated 200 mm - Excavation | 6d | 2025-10-14 A | 2025-10-20 A | RSZone 1Road 09Storm NetworkA88290 | 100% |  |  |  |  | Contract Price Original Scope [132092 SAR]; Excavator Operator [30 h]; Dump Truck Operator [30 h]; Labour [1127.73 h]; Perforated 200 mm [5211] | 132,091.69 | 132,091.69 | RD9 |
| RSZone 1Road 09Storm NetworkA51200 |  | Zone 1 - Road 9 - Storm Network - Perforated 200 mm - Bedding | 2.9d | 2025-10-21 A | 2025-10-23 A | RSZone 1Road 09Storm NetworkA51190 | 100% |  |  |  |  | Contract Price Original Scope [66045.8 SAR]; Compactor Operator [20 h]; Equipment Operator [20 h]; Water Truck Operator [20 h]; Labour [563.87 h]; Perforated 200 mm [5211] | 66,045.84 | 66,045.84 | RD9 |
| RSZone 1Road 09Storm NetworkA51210 |  | Zone 1 - Road 9 - Storm Network - Perforated 200 mm - Pipe Installation | 4d | 2025-10-26 A | 2025-10-29 A | RSZone 1Road 09Storm NetworkA51200 | 100% |  |  |  |  | Contract Price Original Scope [858596 SAR]; Excavator Operator [40 h]; Crane Operator [40 h]; Equipment Operator [40 h]; Labour [7330.25 h]; Perforated 200 mm [5211] | 858,595.97 | 858,595.97 | RD9 |
| RSZone 1Road 09Storm NetworkA51230 |  | Zone 1 - Road 9 - Storm Network - Perforated 200 mm - Backfilling | 5d | 2025-10-30 A | 2025-11-04 A | RSZone 1Road 09Storm NetworkA51210 | 100% | 2025-10-30 | 2025-11-05 |  |  | Contract Price Original Scope [132092 SAR]; Excavator Operator [20 h]; Compactor Operator [20 h]; Dump Truck Operator [20 h]; Water Truck Operator [20 h]; Labour [1127.73 h]; Perforated 200 mm [5211] | 132,091.69 | 132,091.69 | RD9 |
| RSZone 1Road 09Storm NetworkA51220 |  | Zone 1 - Road 9 - Storm Network - Perforated 200 mm - Test | 2d | 2026-11-09 | 2026-11-10 | RSZone 1Road 09Storm NetworkA51230 |  |  |  | 123.4d | 109d | Contract Price Original Scope [132092 SAR]; Pump Operator [20 h]; Equipment Operator [20 h]; Labour [1127.73 h]; Perforated 200 mm [5211] | 132,091.69 |  | RD9 |
|  | 4 | **Gully outfalls** |  | 2025-09-21 | 2026-11-16 |  |  |  |  |  |  |  |  |  |  |
| RSZone 1Road 09Storm NetworkA41790 |  | Zone 1 - Road 9 - Storm Network - Gully outfalls - Excavation | 2d | 2025-09-21 A | 2025-09-23 A | RSZone 1Road 09Storm NetworkA51230 | 100% |  |  |  |  | Contract Price Original Scope [59273.1 SAR]; Excavator Operator [30 h]; Dump Truck Operator [30 h]; Labour [506.04 h]; Gully outfalls [59] | 59,273.07 | 59,273.07 | RD9 |
| RSZone 1Road 09Storm NetworkA41800 |  | Zone 1 - Road 9 - Storm Network - Gully outfalls - Installation | 1.9d | 2025-09-24 A | 2025-09-25 A | RSZone 1Road 09Storm NetworkA41790 | 100% |  |  |  |  | Contract Price Original Scope [237092 SAR]; Crane Operator [7 h]; Equipment Operator [7 h]; Labour [2024.17 h]; Gully outfalls [59] | 237,092.29 | 237,092.29 | RD9 |
| RSZone 1Road 09Storm NetworkA41810 |  | Zone 1 - Road 9 - Storm Network - Gully outfalls - D.I | 3d | 2026-11-09 | 2026-11-11 | RSZone 1Road 09Storm NetworkA41800 |  |  |  | 118.4d | 0d | Contract Price Original Scope [39515.4 SAR]; Crane Operator [7 h]; Boom Truck Operator [7 h]; Equipment Operator [7 h]; Labour [337.36 h]; Gully outfalls [59] | 39,515.38 |  | RD9 |
| RSZone 1Road 09Storm NetworkA41820 |  | Zone 1 - Road 9 - Storm Network - Gully outfalls - Inner Isolation | 2d | 2026-11-12 | 2026-11-14 | RSZone 1Road 09Storm NetworkA41810 |  |  |  | 118.4d | 0d | Contract Price Original Scope [39515.4 SAR]; Equipment Operator [20 h]; Labour [337.36 h]; Gully outfalls [59] | 39,515.38 |  | RD9 |
| RSZone 1Road 09Storm NetworkA41830 |  | Zone 1 - Road 9 - Storm Network - Gully outfalls - Backfilling | 2d | 2026-11-15 | 2026-11-16 | RSZone 1Road 09Storm NetworkA41820 |  |  |  | 118.4d | 104d | Contract Price Original Scope [19757.7 SAR]; Excavator Operator [20 h]; Compactor Operator [20 h]; Dump Truck Operator [20 h]; Water Truck Operator [20 h]; Labour [168.68 h]; Gully outfalls [59] | 19,757.69 |  | RD9 |
|  | 9 | **Collection Chamber** |  | 2025-11-06 | 2026-11-23 |  |  |  |  |  |  |  |  |  |  |
| RSZone 1Road 09Storm NetworkA44940 |  | Zone 1 - Road 9 - Storm Network - Collection Chamber - Excavation | 4d | 2025-11-06 A | 2025-11-10 A | RSZone 1Road 09Storm NetworkA41800 | 100% | 2025-11-06 | 2025-11-11 |  |  | Contract Price Original Scope [48055.1 SAR]; Excavator Operator [30 h]; Dump Truck Operator [30 h]; Labour [410.27 h]; Collection Chamber [62] | 48,055.1 | 48,055.1 | RD9 |
| RSZone 1Road 09Storm NetworkA44950 |  | Zone 1 - Road 9 - Storm Network - Collection Chamber - Installation | 2.9d | 2025-11-11 A | 2025-11-13 A | RSZone 1Road 09Storm NetworkA44940 | 100% |  |  |  |  | Contract Price Original Scope [192220 SAR]; Crane Operator [7 h]; Boom Truck Operator [7 h]; Equipment Operator [7 h]; Labour [1641.08 h]; Collection Chamber [62] | 192,220.42 | 192,220.42 | RD9 |
| RSZone 1Road 09Storm NetworkA44980 |  | Zone 1 - Road 9 - Storm Network - Collection Chamber - Backfilling | 5d | 2025-11-18 A | 2025-11-23 A | RSZone 1Road 09Storm NetworkA44950 | 100% |  |  |  |  | Contract Price Original Scope [16018.4 SAR]; Excavator Operator [20 h]; Compactor Operator [20 h]; Dump Truck Operator [20 h]; Water Truck Operator [20 h]; Labour [136.76 h]; Collection Chamber [62] | 16,018.37 | 16,018.37 | RD9 |
| RSZone 1Road 09Storm NetworkA44960-old |  | Zone 1 - Road 9 - Storm Network - Collection Chamber - D.I (old) | 135d | 2026-05-27 A | 2026-11-01 A | RSZone 1Road 09Storm NetworkA38010-old | 100% |  |  |  |  | Contract Price Original Scope [5161.47 SAR]; Crane Operator [1.13 h]; Boom Truck Operator [1.13 h]; Equipment Operator [1.13 h]; Labour [44.07 h]; Collection Chamber [9.99] | 5,161.47 | 5,161.47 | RD9 |
| RSZone 1Road 09Storm NetworkA44960 |  | Zone 1 - Road 9 - Storm Network - Collection Chamber - D.I | 2.52d | 2026-11-17 | 2026-11-21 | RSZone 1Road 09Storm NetworkA44960-old, RSZone 1Road 09Storm NetworkA38010 |  |  |  | 111.3d | 0d | Contract Price Original Scope [26875.3 SAR]; Crane Operator [5.87 h]; Boom Truck Operator [5.87 h]; Equipment Operator [5.87 h]; Labour [229.45 h]; Collection Chamber [52.01] | 26,875.26 |  | RD9 |
| RSZone 1Road 09Storm NetworkA44970 |  | Zone 1 - Road 9 - Storm Network - Collection Chamber - Inner Isolation | 2d | 2026-11-21 | 2026-11-23 | RSZone 1Road 09Storm NetworkA44960 |  |  |  | 113.3d | 98.9d | Contract Price Original Scope [32036.7 SAR]; Equipment Operator [20 h]; Labour [273.51 h]; Collection Chamber [62] | 32,036.74 |  | RD9 |
|  | 12 | **Inspection Chamber** |  | 2026-06-01 | 2026-11-25 |  |  |  |  |  |  |  |  |  |  |
| RSZone 1Road 09Storm NetworkA52990-old |  | Zone 1 - Road 9 - Storm Network - Inspection Chamber - Excavation (old) | 131d | 2026-06-01 A | 2026-11-01 A | RSZone 1Road 09Storm NetworkA44960-old | 100% |  |  |  |  | Contract Price Original Scope [252929 SAR]; Excavator Operator [29.52 h]; Dump Truck Operator [29.52 h]; Labour [2159.38 h]; Inspection Chamber [61.01] | 252,928.78 | 252,928.78 | RD9 |
| RSZone 1Road 09Storm NetworkA53000-old |  | Zone 1 - Road 9 - Storm Network - Inspection Chamber - IC Installation (old) | 130d | 2026-06-02 A | 2026-11-01 A | RSZone 1Road 09Storm NetworkA52990-old | 100% |  |  |  |  | Contract Price Original Scope [1011458 SAR]; Crane Operator [39.35 h]; Boom Truck Operator [39.35 h]; Equipment Operator [39.35 h]; Labour [8635.31 h]; Inspection Chamber [60.99] | 1,011,458.09 | 1,011,458.09 | RD9 |
| RSZone 1Road 09Storm NetworkA52990 |  | Zone 1 - Road 9 - Storm Network - Inspection Chamber - Excavation | 1d | 2026-11-02 A | 2026-11-05 A | RSZone 1Road 09Storm NetworkA52990-old, RSZone 1Road 09Storm NetworkA44960-old | 100% | 2026-12-07 | 2026-12-08 |  |  | Contract Price Original Scope [4112.66 SAR]; Excavator Operator [0.48 h]; Dump Truck Operator [0.48 h]; Labour [35.11 h]; Inspection Chamber [0.99] | 4,112.66 | 4,112.66 | RD9 |
| RSZone 1Road 09Storm NetworkA53000 |  | Zone 1 - Road 9 - Storm Network - Inspection Chamber - IC Installation | 1d | 2026-11-02 A | 2026-11-05 A | RSZone 1Road 09Storm NetworkA53000-old, RSZone 1Road 09Storm NetworkA52990 | 100% | 2026-12-08 | 2026-12-09 |  |  | Contract Price Original Scope [16707.7 SAR]; Crane Operator [0.65 h]; Boom Truck Operator [0.65 h]; Equipment Operator [0.65 h]; Labour [142.64 h]; Inspection Chamber [1.01] | 16,707.69 | 16,707.69 | RD9 |
| RSZone 1Road 09Storm NetworkA53010 |  | Zone 1 - Road 9 - Storm Network - Inspection Chamber - D.I | 3d | 2026-11-09 | 2026-11-11 | RSZone 1Road 09Storm NetworkA53000 |  |  |  | 118.4d | 7.1d | Contract Price Original Scope [171361 SAR]; Crane Operator [7 h]; Boom Truck Operator [7 h]; Equipment Operator [7 h]; Labour [1462.99 h]; Inspection Chamber [62] | 171,360.96 |  | RD9 |
| RSZone 1Road 09Storm NetworkA53020 |  | Zone 1 - Road 9 - Storm Network - Inspection Chamber - Inner Isolation | 2d | 2026-11-21 | 2026-11-23 | RSZone 1Road 09Storm NetworkA53010, RSZone 1Road 09Storm NetworkA52990, RSZone 1Road 09Storm NetworkA44960 |  |  |  | 111.3d | 0d | Contract Price Original Scope [171361 SAR]; Equipment Operator [20 h]; Labour [1462.99 h]; Inspection Chamber [62] | 171,360.96 |  | RD9 |
| RSZone 1Road 09Storm NetworkA53030 |  | Zone 1 - Road 9 - Storm Network - Inspection Chamber - Backfilling | 2d | 2026-11-23 | 2026-11-25 | RSZone 1Road 09Storm NetworkA53020 |  |  |  | 111.3d | 96.9d | Contract Price Original Scope [85680.5 SAR]; Excavator Operator [20 h]; Compactor Operator [20 h]; Dump Truck Operator [20 h]; Water Truck Operator [20 h]; Labour [731.5 h]; Inspection Chamber [62] | 85,680.48 |  | RD9 |

| ID | WBS | Activity | Duration | Start | Finish | Predecessors | Complete | Planned start | Planned finish | Total float | Free float | Resources | Cost | Actual cost | MODON |
| --- | --- | --- | --- | --- | --- | --- | --- | --- | --- | --- | --- | --- | --- | --- | --- |
|  | 5 | **Catch Basins** |  | 2025-09-28 | 2026-11-16 |  |  |  |  |  |  |  |  |  |  |
| RSZone 1Road 09Storm NetworkA43040 |  | Zone 1 - Road 9 - Storm Network - Catch Basins - Excavation | 4.9d | 2025-09-28 A | 2025-10-02 A | RSZone 1Road 09Storm NetworkA44980 | 100% |  |  |  |  | Contract Price Original Scope [75762.2 SAR]; Excavator Operator [30 h]; Dump Truck Operator [30 h]; Labour [646.82 h]; Catch Basins [22] | 75,762.18 | 75,762.18 | RD9 |
| RSZone 1Road 09Storm NetworkA43050 |  | Zone 1 - Road 9 - Storm Network - Catch Basins - Installation | 3d | 2025-10-05 A | 2025-10-07 A | RSZone 1Road 09Storm NetworkA43040 | 100% |  |  |  |  | Contract Price Original Scope [303049 SAR]; Crane Operator [7 h]; Boom Truck Operator [7 h]; Equipment Operator [7 h]; Labour [2587.27 h]; Catch Basins [22] | 303,048.73 | 303,048.73 | RD9 |
| RSZone 1Road 09Storm NetworkA43060 |  | Zone 1 - Road 9 - Storm Network - Catch Basins - D.I | 3d | 2026-11-09 | 2026-11-11 | RSZone 1Road 09Storm NetworkA43050 |  |  |  | 118.4d | 0d | Contract Price Original Scope [50508.1 SAR]; Crane Operator [7 h]; Boom Truck Operator [7 h]; Equipment Operator [7 h]; Labour [431.21 h]; Catch Basins [22] | 50,508.12 |  | RD9 |
| RSZone 1Road 09Storm NetworkA43070 |  | Zone 1 - Road 9 - Storm Network - Catch Basins - Inner Isolation | 2d | 2026-11-12 | 2026-11-14 | RSZone 1Road 09Storm NetworkA43060 |  |  |  | 118.4d | 0d | Contract Price Original Scope [50508.1 SAR]; Equipment Operator [20 h]; Labour [431.21 h]; Catch Basins [22] | 50,508.12 |  | RD9 |
| RSZone 1Road 09Storm NetworkA43080 |  | Zone 1 - Road 9 - Storm Network - Catch Basins - Backfilling | 2d | 2026-11-15 | 2026-11-16 | RSZone 1Road 09Storm NetworkA43070 |  |  |  | 118.4d | 104d | Contract Price Original Scope [25254.1 SAR]; Excavator Operator [20 h]; Compactor Operator [20 h]; Dump Truck Operator [20 h]; Water Truck Operator [20 h]; Labour [215.61 h]; Catch Basins [22] | 25,254.06 |  | RD9 |
|  | 7 | **Soakaway** |  | 2025-11-03 | 2026-11-15 |  |  |  |  |  |  |  |  |  |  |
| RSZone 1Road 09Storm NetworkA44190 |  | Zone 1 - Road 9 - Storm Network - Soakaway - Excavation | 3d | 2025-11-03 A | 2025-11-05 A | RSZone 1Road 09Storm NetworkA43050 | 100% |  |  |  |  | Contract Price Original Scope [35098 SAR]; Excavator Operator [30 h]; Dump Truck Operator [30 h]; Labour [299.65 h]; Soakaway [11] | 35,097.98 | 35,097.98 | RD9 |
| RSZone 1Road 09Storm NetworkA44200 |  | Zone 1 - Road 9 - Storm Network - Soakaway - Installation | 0.9d | 2025-11-06 A | 2025-11-07 A | RSZone 1Road 09Storm NetworkA44190 | 100% | 2025-11-06 | 2025-11-06 |  |  | Contract Price Original Scope [140392 SAR]; Crane Operator [7 h]; Equipment Operator [7 h]; Labour [1198.59 h]; Soakaway [11] | 140,391.92 | 140,391.92 | RD9 |
| RSZone 1Road 09Storm NetworkA44220-old |  | Zone 1 - Road 9 - Storm Network - Soakaway - Inner Isolation (old) | 135d | 2026-05-27 A | 2026-11-01 A | RSZone 1Road 09Storm NetworkA44200, RSZone 1Road 09Storm NetworkA53000-old | 100% |  |  |  |  | Contract Price Original Scope [6376.13 SAR]; Equipment Operator [5.45 h]; Labour [54.44 h]; Soakaway [3] | 6,376.13 | 6,376.13 | RD9 |
| RSZone 1Road 09Storm NetworkA44230-old |  | Zone 1 - Road 9 - Storm Network - Soakaway - Backfilling (old) | 134d | 2026-05-28 A | 2026-11-01 A | RSZone 1Road 09Storm NetworkA44220-old | 100% | 2026-05-28 | 2026-11-02 |  |  | Contract Price Original Scope [3188.07 SAR]; Excavator Operator [5.45 h]; Compactor Operator [5.45 h]; Dump Truck Operator [5.45 h]; Water Truck Operator [5.45 h]; Labour [27.22 h]; Soakaway [3] | 3,188.07 | 3,188.07 | RD9 |
| RSZone 1Road 09Storm NetworkA44220 |  | Zone 1 - Road 9 - Storm Network - Soakaway - Inner Isolation | 1.46d | 2026-11-09 | 2026-11-10 | RSZone 1Road 09Storm NetworkA44220-old, RSZone 1Road 09Storm NetworkA53000 |  |  |  | 73.96d | 0d | Contract Price Original Scope [17022.5 SAR]; Equipment Operator [14.55 h]; Labour [145.33 h]; Soakaway [8] | 17,022.52 |  | RD9 |
| RSZone 1Road 09Storm NetworkA44230 |  | Zone 1 - Road 9 - Storm Network - Soakaway - Backfilling | 1.46d | 2026-11-10 | 2026-11-11 | RSZone 1Road 09Storm NetworkA44230-old, RSZone 1Road 09Storm NetworkA44220 |  |  |  | 73.96d | 0d | Contract Price Original Scope [8511.26 SAR]; Excavator Operator [14.55 h]; Compactor Operator [14.55 h]; Dump Truck Operator [14.55 h]; Water Truck Operator [14.55 h]; Labour [72.66 h]; Soakaway [8] | 8,511.26 |  | RD9 |
| RSZone 1Road 09Storm NetworkA44210 |  | Zone 1 - Road 9 - Storm Network - Soakaway - D.I | 3d | 2026-11-11 | 2026-11-15 | RSZone 1Road 09Storm NetworkA44230, RSZone 1Road 09Storm NetworkA44220 |  |  |  | 119.49d | 105.09d | Contract Price Original Scope [23398.7 SAR]; Crane Operator [7 h]; Boom Truck Operator [7 h]; Equipment Operator [7 h]; Labour [199.77 h]; Soakaway [11] | 23,398.65 |  | RD9 |
|  | 11 | **Gravel and Geotextile** |  | 2025-10-19 | 2025-10-20 |  |  |  |  |  |  |  |  |  |  |
| RSZone 1Road 09Storm NetworkA51840 |  | Zone 1 - Road 9 - Storm Network - Gravel and Geotextile - Installation | 2d | 2025-10-19 A | 2025-10-20 A | RSZone 1Road 09Storm NetworkA44200 | 100% |  |  |  |  | Contract Price Original Scope [611241 SAR]; Excavator Operator [7 h]; Dump Truck Operator [7 h]; Equipment Operator [7 h]; Water Truck Operator [7 h]; Labour [5218.46 h]; Gravel and Geotextile [5211] | 611,241.26 | 611,241.26 | RD9 |
|  | 3 | **Sewage Network** |  | 2025-11-06 | 2027-03-27 |  |  |  |  |  |  |  |  |  |  |
|  | 2 | **UPVC Pipes** |  | 2026-05-17 | 2026-11-15 |  |  |  |  |  |  |  |  |  |  |
|  | 3 | **UPVC Pipes 200 MM** |  | 2026-05-17 | 2026-11-15 |  |  |  |  |  |  |  |  |  |  |
| RSZone 1Road 09Sewage NetworkA32770-old |  | Zone 1 - Road 9 - Sewage Network - UPVC Pipes 200 MM - Excavation (old) | 144d | 2026-05-17 A | 2026-11-01 A | RSZone 1Road 09Storm NetworkA44190 | 100% |  |  |  |  | Contract Price Original Scope [13739.5 SAR]; Excavator Operator [23.78 h]; Dump Truck Operator [23.78 h]; Labour [117.3 h]; UPVC Pipes 200 MM [179.17] | 13,739.49 | 13,739.49 | RD9 |
| RSZone 1Road 09Sewage NetworkA32780-old |  | Zone 1 - Road 9 - Sewage Network - UPVC Pipes 200 MM - Pipe Installation (old) | 142d | 2026-05-19 A | 2026-11-01 A | RSZone 1Road 09Sewage NetworkA32770-old | 100% |  |  |  |  | Contract Price Original Scope [53540.2 SAR]; Excavator Operator [28.52 h]; Crane Operator [28.52 h]; Equipment Operator [28.52 h]; Labour [457.1 h]; UPVC Pipes 200 MM [161.12] | 53,540.22 | 53,540.22 | RD9 |
| RSZone 1Road 09Sewage NetworkA32790-old |  | Zone 1 - Road 9 - Sewage Network - UPVC Pipes 200 MM - Test (old) | 140d | 2026-05-21 A | 2026-11-01 A | RSZone 1Road 09Sewage NetworkA32780-old | 100% | 2026-05-21 | 2026-11-02 |  |  | Contract Price Original Scope [2098.96 SAR]; Pump Operator [3.63 h]; Equipment Operator [3.63 h]; Labour [17.92 h]; UPVC Pipes 200 MM [41.06] | 2,098.96 | 2,098.96 | RD9 |
| RSZone 1Road 09Sewage NetworkA32800-old |  | Zone 1 - Road 9 - Sewage Network - UPVC Pipes 200 MM - Backfilling (old) | 138d | 2026-05-24 A | 2026-11-01 A | RSZone 1Road 09Sewage NetworkA32790-old | 100% |  |  |  |  | Contract Price Original Scope [2098.96 SAR]; Excavator Operator [3.63 h]; Compactor Operator [3.63 h]; Dump Truck Operator [3.63 h]; Water Truck Operator [3.63 h]; Labour [17.92 h]; UPVC Pipes 200 MM [41.06] | 2,098.96 | 2,098.96 | RD9 |
| RSZone 1Road 09Sewage NetworkA32770 |  | Zone 1 - Road 9 - Sewage Network - UPVC Pipes 200 MM - Excavation | 1d | 2026-11-09 | 2026-11-09 | RSZone 1Road 09Sewage NetworkA32770-old |  |  |  | 92.98d | 0d | Contract Price Original Scope [3591.33 SAR]; Excavator Operator [6.22 h]; Dump Truck Operator [6.22 h]; Labour [30.66 h]; UPVC Pipes 200 MM [46.83] | 3,591.33 |  | RD9 |
| RSZone 1Road 09Sewage NetworkA32780 |  | Zone 1 - Road 9 - Sewage Network - UPVC Pipes 200 MM - Pipe Installation | 1.15d | 2026-11-10 | 2026-11-11 | RSZone 1Road 09Sewage NetworkA32780-old, RSZone 1Road 09Sewage NetworkA32770 |  |  |  | 92.98d | 0d | Contract Price Original Scope [21560 SAR]; Excavator Operator [11.48 h]; Crane Operator [11.48 h]; Equipment Operator [11.48 h]; Labour [184.07 h]; UPVC Pipes 200 MM [64.88] | 21,560.03 |  | RD9 |
| RSZone 1Road 09Sewage NetworkA32790 |  | Zone 1 - Road 9 - Sewage Network - UPVC Pipes 200 MM - Test | 1.64d | 2026-11-11 | 2026-11-12 | RSZone 1Road 09Sewage NetworkA32790-old, RSZone 1Road 09Sewage NetworkA32780 |  |  |  | 92.98d | 0d | Contract Price Original Scope [9454.93 SAR]; Pump Operator [16.37 h]; Equipment Operator [16.37 h]; Labour [80.72 h]; UPVC Pipes 200 MM [184.94] | 9,454.93 |  | RD9 |
| RSZone 1Road 09Sewage NetworkA32800 |  | Zone 1 - Road 9 - Sewage Network - UPVC Pipes 200 MM - Backfilling | 1.64d | 2026-11-12 | 2026-11-15 | RSZone 1Road 09Sewage NetworkA32800-old, RSZone 1Road 09Sewage NetworkA32790 |  |  |  | 92.98d | 0d | Contract Price Original Scope [9454.93 SAR]; Excavator Operator [16.37 h]; Compactor Operator [16.37 h]; Dump Truck Operator [16.37 h]; Water Truck Operator [16.37 h]; Labour [80.72 h]; UPVC Pipes 200 MM [184.94] | 9,454.93 |  | RD9 |

| ID | WBS | Activity | Duration | Start | Finish | Predecessors | Complete | Planned start | Planned finish | Total float | Free float | Resources | Cost | Actual cost | MODON |
| --- | --- | --- | --- | --- | --- | --- | --- | --- | --- | --- | --- | --- | --- | --- | --- |
|  | 10 | **Manhole** |  | 2026-05-18 | 2026-11-23 |  |  |  |  |  |  |  |  |  |  |
| RSZone 1Road 09Sewage NetworkA33690-old |  | Zone 1 - Road 9 - Sewage Network - Manhole - Excavation (old) | 143d | 2026-05-18 A | 2026-11-01 A | RSZone 1Road 09Sewage NetworkA32800-old | 100% |  |  |  |  | Contract Price Original Scope [11402.8 SAR]; Excavator Operator [25.72 h]; Dump Truck Operator [25.72 h]; Labour [97.35 h]; Manholes (all depths, GRP) [6] | 11,402.75 | 11,402.75 | RD9 |
| RSZone 1Road 09Sewage NetworkA33700-old |  | Zone 1 - Road 9 - Sewage Network - Manhole - FOOTING (old) | 142d | 2026-05-19 A | 2026-11-01 A | RSZone 1Road 09Sewage NetworkA33690-old | 100% |  |  |  |  | Contract Price Original Scope [68416.5 SAR]; Labour [584.1 h]; Manholes (all depths, GRP) [6] | 68,416.51 | 68,416.51 | RD9 |
| RSZone 1Road 09Sewage NetworkA33710-old |  | Zone 1 - Road 9 - Sewage Network - Manhole - MH INSTALLATION (old) | 141d | 2026-05-20 A | 2026-11-01 A | RSZone 1Road 09Sewage NetworkA33700-old | 100% |  |  |  |  | Contract Price Original Scope [79819.3 SAR]; Labour [681.46 h]; Manholes (all depths, GRP) [6] | 79,819.26 | 79,819.26 | RD9 |
| RSZone 1Road 09Sewage NetworkA33690 |  | Zone 1 - Road 9 - Sewage Network - Manhole - Excavation | 1d | 2026-11-02 A | 2026-11-05 A | RSZone 1Road 09Sewage NetworkA33690-old, RSZone 1Road 09Sewage NetworkA32800-old | 100% | 2026-11-08 | 2026-11-09 |  |  | Contract Price Original Scope [1899.23 SAR]; Excavator Operator [4.28 h]; Dump Truck Operator [4.28 h]; Labour [16.21 h]; Manholes (all depths, GRP) [1] | 1,899.23 | 1,899.23 | RD9 |
| RSZone 1Road 09Sewage NetworkA33700 |  | Zone 1 - Road 9 - Sewage Network - Manhole - FOOTING | 1d | 2026-11-02 A | 2026-11-05 A | RSZone 1Road 09Sewage NetworkA33700-old, RSZone 1Road 09Sewage NetworkA33690 | 100% | 2026-11-09 | 2026-11-10 |  |  | Contract Price Original Scope [11395.4 SAR]; Labour [97.29 h]; Manholes (all depths, GRP) [1] | 11,395.36 | 11,395.36 | RD9 |
| RSZone 1Road 09Sewage NetworkA33710 |  | Zone 1 - Road 9 - Sewage Network - Manhole - MH INSTALLATION | 1d | 2026-11-02 A | 2026-11-05 A | RSZone 1Road 09Sewage NetworkA33710-old, RSZone 1Road 09Sewage NetworkA33700 | 100% | 2026-11-10 | 2026-11-11 |  |  | Contract Price Original Scope [13294.6 SAR]; Labour [113.5 h]; Manholes (all depths, GRP) [1] | 13,294.59 | 13,294.59 | RD9 |
| RSZone 1Road 09Sewage NetworkA33720 |  | Zone 1 - Road 9 - Sewage Network - Manhole - COVER INSTALLATION | 3d | 2026-11-15 | 2026-11-18 | RSZone 1Road 09Sewage NetworkA33710, RSZone 1Road 09Sewage NetworkA33690, RSZone 1Road 09Sewage NetworkA33700, RSZone 1Road 09Sewage NetworkA32800 |  |  |  | 92.98d | 0d | Contract Price Original Scope [380057 SAR]; Labour [3244.73 h]; Manholes (all depths, GRP) [100] | 380,056.55 |  | RD9 |
| RSZone 1Road 09Sewage NetworkA33730 |  | Zone 1 - Road 9 - Sewage Network - Manhole - TEST | 2d | 2026-11-18 | 2026-11-21 | RSZone 1Road 09Sewage NetworkA33720 |  |  |  | 92.98d | 0d | Contract Price Original Scope [26604 SAR]; Pump Operator [20 h]; Equipment Operator [20 h]; Labour [227.13 h]; Manholes (all depths, GRP) [7] | 26,603.96 |  | RD9 |
| RSZone 1Road 09Sewage NetworkA33740 |  | Zone 1 - Road 9 - Sewage Network - Manhole - BACKFILLING | 2d | 2026-11-21 | 2026-11-23 | RSZone 1Road 09Sewage NetworkA33730 |  |  |  | 92.98d | 92.38d | Contract Price Original Scope [26604 SAR]; Excavator Operator [20 h]; Compactor Operator [20 h]; Dump Truck Operator [20 h]; Water Truck Operator [20 h]; Labour [227.13 h]; Manholes (all depths, GRP) [7] | 26,603.96 |  | RD9 |
|  | 1 | **Pump Station (PS01)** |  | 2025-11-06 | 2027-03-27 |  |  |  |  |  |  |  |  |  |  |
| RSZone 1Road 09Sewage NetworkA34740 |  | Zone 1 - Road 9 - Sewage Network - Pump Station (PS01) - Fence & Gates | 5d | 2025-11-06 A | 2025-11-11 A | RSZone 1Road 02Sewage NetworkA34680 | 100% | 2025-11-06 | 2025-11-12 |  |  | Contract Price Original Scope [223548 SAR]; Labour [1908.54 h]; Pump Station PS01 - Fence and Gates [1] | 223,548.04 | 223,548.04 | RD9 |
| RSZone 1Road 09Sewage NetworkA34230-old |  | Zone 1 - Road 9 - Sewage Network - Pump Station (PS01) - Pumps (old) | 142d | 2026-05-19 A | 2026-11-01 A | RSZone 1Road 02Sewage NetworkA34560-old, RSZone 1Road 09Sewage NetworkA34280-old | 100% |  |  |  |  | Contract Price Original Scope [28553.5 SAR]; Crane Operator [0.09 h]; Boom Truck Operator [0.09 h]; Equipment Operator [0.09 h]; Labour [243.78 h]; Pump Station PS01 - Pumps [0.01] | 28,553.54 | 28,553.54 | RD9 |
| RSZone 1Road 09Sewage NetworkA34240-old |  | Zone 1 - Road 9 - Sewage Network - Pump Station (PS01) - Control System (old) | 141d | 2026-05-20 A | 2026-11-01 A | RSZone 1Road 02Sewage NetworkA34570-old | 100% |  |  |  |  | Contract Price Original Scope [288870 SAR]; Crane Operator [18.6 h]; Boom Truck Operator [18.6 h]; Equipment Operator [18.6 h]; Labour [2466.22 h]; Pump Station PS01 - Control System [0.6] | 288,869.88 | 288,869.88 | RD9 |
| RSZone 1Road 09Sewage NetworkA34250-old |  | Zone 1 - Road 9 - Sewage Network - Pump Station (PS01) - In-line Booste Station (old) | 138d | 2026-05-24 A | 2026-11-01 A | RSZone 1Road 02Sewage NetworkA34580-old, RSZone 1Road 09Sewage NetworkA34300-old | 100% |  |  |  |  | Contract Price Original Scope [2364.75 SAR]; Crane Operator [0.06 h]; Boom Truck Operator [0.06 h]; Equipment Operator [0.06 h]; Labour [20.19 h]; Pump Station PS01 - In-line Booste Station [0.01] | 2,364.75 | 2,364.75 | RD9 |
| RSZone 1Road 09Sewage NetworkA34260-old |  | Zone 1 - Road 9 - Sewage Network - Pump Station (PS01) - Raked bar SS 316 (35 mm) (old) | 136d | 2026-05-26 A | 2026-11-01 A | RSZone 1Road 09Sewage NetworkA34240-old | 100% |  |  |  |  | Contract Price Original Scope [1324.27 SAR]; Crane Operator [0.9 h]; Boom Truck Operator [0.9 h]; Equipment Operator [0.9 h]; Labour [11.31 h]; Pump Station PS01 - Raked bar SS 316 (35 mm) [0.1] | 1,324.27 | 1,324.27 | RD9 |
| RSZone 1Road 09Sewage NetworkA34280-old |  | Zone 1 - Road 9 - Sewage Network - Pump Station (PS01) - Concrete Element Works (old) | 135d | 2026-05-27 A | 2026-11-01 A | RSZone 1Road 02Sewage NetworkA34610-old, RSZone 1Road 09Sewage NetworkA34250-old | 100% |  |  |  |  | Contract Price Original Scope [57052.3 SAR]; Crane Operator [6.2 h]; Pump Operator [6.2 h]; Equipment Operator [6.2 h]; Labour [487.08 h]; Pump Station PS01 - Concrete Element Works [0.2] | 57,052.32 | 57,052.32 | RD9 |
| RSZone 1Road 09Sewage NetworkA34300-old |  | Zone 1 - Road 9 - Sewage Network - Pump Station (PS01) - Light Works (old) | 132d | 2026-05-31 A | 2026-11-01 A | RSZone 1Road 02Sewage NetworkA34630-old, RSZone 1Road 09Sewage NetworkA34310-old | 100% |  |  |  |  | Contract Price Original Scope [189180 SAR]; Crane Operator [5.4 h]; Boom Truck Operator [5.4 h]; Equipment Operator [5.4 h]; Labour [1615.12 h]; Pump Station PS01 - Light Works [0.6] | 189,180.13 | 189,180.13 | RD9 |
| RSZone 1Road 09Sewage NetworkA34310-old |  | Zone 1 - Road 9 - Sewage Network - Pump Station (PS01) - UPVC Ducts (old) | 130d | 2026-06-02 A | 2026-11-01 A | RSZone 1Road 02Sewage NetworkA34640-old, RSZone 1Road 09Sewage NetworkA34240-old | 100% |  |  |  |  | Contract Price Original Scope [4884.27 SAR]; Crane Operator [4.5 h]; Boom Truck Operator [4.5 h]; Equipment Operator [4.5 h]; Labour [41.7 h]; Pump Station PS01 - UPVC Ducts [0.5] | 4,884.27 | 4,884.27 | RD9 |
| RSZone 1Road 09Sewage NetworkA34240 |  | Zone 1 - Road 9 - Sewage Network - Pump Station (PS01) - Control System | 1.24d | 2026-11-10 | 2026-11-11 | RSZone 1Road 09Sewage NetworkA34240-old, RSZone 1Road 02Sewage NetworkA34570 |  |  |  | 78.84d | 0d | Contract Price Original Scope [192580 SAR]; Crane Operator [12.4 h]; Boom Truck Operator [12.4 h]; Equipment Operator [12.4 h]; Labour [1644.15 h]; Pump Station PS01 - Control System [0.4] | 192,579.92 |  | RD9 |
| RSZone 1Road 09Sewage NetworkA34260 |  | Zone 1 - Road 9 - Sewage Network - Pump Station (PS01) - Raked bar SS 316 (35 mm) | 2.7d | 2026-11-11 | 2026-11-14 | RSZone 1Road 09Sewage NetworkA34260-old, RSZone 1Road 09Sewage NetworkA34240 |  |  |  | 78.84d | 0d | Contract Price Original Scope [11918.4 SAR]; Crane Operator [8.1 h]; Boom Truck Operator [8.1 h]; Equipment Operator [8.1 h]; Labour [101.75 h]; Pump Station PS01 - Raked bar SS 316 (35 mm) [0.9] | 11,918.39 |  | RD9 |
| RSZone 1Road 09Sewage NetworkA34270 |  | Zone 1 - Road 9 - Sewage Network - Pump Station (PS01) - Tank | 1.4d | 2026-11-14 | 2026-11-16 | RSZone 1Road 02Sewage NetworkA34670, RSZone 1Road 09Sewage NetworkA34260, RSZone 1Road 09Sewage NetworkA34240 |  |  |  | 78.84d | 0d | Contract Price Original Scope [1782130 SAR]; Crane Operator [14 h]; Boom Truck Operator [14 h]; Equipment Operator [14 h]; Labour [15214.9 h]; Pump Station PS01 - Tank [1] | 1,782,129.83 |  | RD9 |
| RSZone 1Road 09Sewage NetworkA34310 |  | Zone 1 - Road 9 - Sewage Network - Pump Station (PS01) - UPVC Ducts | 1.5d | 2026-11-16 | 2026-11-17 | RSZone 1Road 09Sewage NetworkA34310-old, RSZone 1Road 02Sewage NetworkA34640, RSZone 1Road 09Sewage NetworkA34270 |  |  |  | 78.84d | 0d | Contract Price Original Scope [4884.27 SAR]; Crane Operator [4.5 h]; Boom Truck Operator [4.5 h]; Equipment Operator [4.5 h]; Labour [41.7 h]; Pump Station PS01 - UPVC Ducts [0.5] | 4,884.27 |  | RD9 |
| RSZone 1Road 09Sewage NetworkA34300 |  | Zone 1 - Road 9 - Sewage Network - Pump Station (PS01) - Light Works | 1.2d | 2026-11-17 | 2026-11-19 | RSZone 1Road 09Sewage NetworkA34300-old, RSZone 1Road 02Sewage NetworkA34630, RSZone 1Road 09Sewage NetworkA34310 |  |  |  | 78.84d | 0d | Contract Price Original Scope [126120 SAR]; Crane Operator [3.6 h]; Boom Truck Operator [3.6 h]; Equipment Operator [3.6 h]; Labour [1076.75 h]; Pump Station PS01 - Light Works [0.4] | 126,120.08 |  | RD9 |
| RSZone 1Road 09Sewage NetworkA34250 |  | Zone 1 - Road 9 - Sewage Network - Pump Station (PS01) - In-line Booste Station | 2.97d | 2026-11-19 | 2026-11-23 | RSZone 1Road 09Sewage NetworkA34250-old, RSZone 1Road 02Sewage NetworkA34580, RSZone 1Road 09Sewage NetworkA34300 |  |  |  | 78.84d | 2.73d | Contract Price Original Scope [234111 SAR]; Crane Operator [5.94 h]; Boom Truck Operator [5.94 h]; Equipment Operator [5.94 h]; Labour [1998.72 h]; Pump Station PS01 - In-line Booste Station [0.99] | 234,110.63 |  | RD9 |
| RSZone 1Road 09Sewage NetworkA34280 |  | Zone 1 - Road 9 - Sewage Network - Pump Station (PS01) - Concrete Element Works | 2.48d | 2026-11-25 | 2026-11-29 | RSZone 1Road 09Sewage NetworkA34280-old, RSZone 1Road 02Sewage NetworkA34610, RSZone 1Road 09Sewage NetworkA34250 |  |  |  | 76.11d | 69.75d | Contract Price Original Scope [228209 SAR]; Crane Operator [24.8 h]; Pump Operator [24.8 h]; Equipment Operator [24.8 h]; Labour [1948.33 h]; Pump Station PS01 - Concrete Element Works [0.8] | 228,209.27 |  | RD9 |
| RSZone 1Road 09Sewage NetworkA34230 |  | Zone 1 - Road 9 - Sewage Network - Pump Station (PS01) - Pumps | 2.97d | 2027-02-17 | 2027-02-23 | RSZone 1Road 09Sewage NetworkA34230-old, RSZone 1Road 02Sewage NetworkA34560, RSZone 1Road 09Sewage NetworkA34280 |  |  |  | 6.36d | 4.86d | Contract Price Original Scope [2826801 SAR]; Crane Operator [8.91 h]; Boom Truck Operator [8.91 h]; Equipment Operator [8.91 h]; Labour [24133.8 h]; Pump Station PS01 - Pumps [0.99] | 2,826,800.92 |  | RD9 |
| RSZone 1Road 09Sewage NetworkA34290 |  | Zone 1 - Road 9 - Sewage Network - Pump Station (PS01) - MCC | 3.1d | 2027-03-06 | 2027-03-11 | RSZone 1Road 02Sewage NetworkA34620, RSZone 1Road 09Sewage NetworkA34230, RSZone 1Road 09Sewage NetworkA34250, RSZone 1Road 09Sewage NetworkA34280, RSZone 1Road 09Sewage NetworkA34300, RSZone 1Road 09Sewage NetworkA34310, RSZone 1Road 02Sewage NetworkA34470, RSZone 1Road 02Sewage NetworkA34520, RSZone 1Road 02Sewage NetworkA34530, RSZone 1Road 02Sewage NetworkA34580, RSZone 1Road 02Sewage NetworkA34630, RSZone 1Road 02Sewage NetworkA34640 |  |  |  | 1.5d | 0d | Contract Price Original Scope [344019 SAR]; Crane Operator [31 h]; Boom Truck Operator [31 h]; Equipment Operator [31 h]; Labour [2937.05 h]; Pump Station PS01 - MCC [1] | 344,018.61 |  | RD9 |
| RSZone 1Road 09Sewage NetworkA34320 |  | Zone 1 - Road 9 - Sewage Network - Pump Station (PS01) - Earthing | 2d | 2027-03-11 | 2027-03-16 | RSZone 1Road 02Sewage NetworkA34650, RSZone 1Road 09Sewage NetworkA34290 |  |  |  | 1.5d | 0.9d | Contract Price Original Scope [16144.2 SAR]; Crane Operator [9 h]; Boom Truck Operator [9 h]; Equipment Operator [9 h]; Labour [137.83 h]; Pump Station PS01 - Earthing [1] | 16,144.22 |  | RD9 |
| RSZone 1Road 09Sewage NetworkA34330 |  | Zone 1 - Road 9 - Sewage Network - Pump Station (PS01) - Interlock Paving | 4d | 2027-03-17 | 2027-03-27 | RSZone 1Road 02Sewage NetworkA34660, RSZone 1Road 09Sewage NetworkA34320 |  |  |  | 0.6d | 0d | Contract Price Original Scope [59533.7 SAR]; Compactor Operator [8 h]; Equipment Operator [8 h]; Water Truck Operator [8 h]; Labour [508.27 h]; Pump Station PS01 - Interlock Paving [1] | 59,533.7 |  | RD9 |

| ID | WBS | Activity | Duration | Start | Finish | Predecessors | Complete | Planned start | Planned finish | Total float | Free float | Resources | Cost | Actual cost | MODON |
| --- | --- | --- | --- | --- | --- | --- | --- | --- | --- | --- | --- | --- | --- | --- | --- |
|  | 7 | **Potable Network** |  | 2025-11-06 | 2026-12-06 |  |  |  |  |  |  |  |  |  |  |
|  | 2 | **Potable Pipes 200 MM** |  | 2025-11-23 | 2026-11-10 |  |  |  |  |  |  |  |  |  |  |
| RSZone 1Road 09Potable NetworkA53820 |  | Zone 1 - Road 9 - Potable Network - Potable Pipes 200 MM - Excavation | 4d | 2025-11-23 A | 2025-11-26 A | RSZone 1Road 02Potable NetworkA57040 | 100% |  |  |  |  | Contract Price Original Scope [6290.02 SAR]; Excavator Operator [30 h]; Dump Truck Operator [30 h]; Labour [53.7 h]; Potable Pipes 200 MM [251] | 6,290.02 | 6,290.02 | RD9 |
| RSZone 1Road 09Potable NetworkA53830 |  | Zone 1 - Road 9 - Potable Network - Potable Pipes 200 MM - Installation | 3d | 2025-11-27 A | 2025-11-30 A | RSZone 1Road 09Potable NetworkA53820 | 100% | 2025-11-27 | 2025-12-01 |  |  | Contract Price Original Scope [44030.2 SAR]; Labour [375.91 h]; Potable Pipes 200 MM [251] | 44,030.16 | 44,030.16 | RD9 |
| RSZone 1Road 09Potable NetworkA53840-old |  | Zone 1 - Road 9 - Potable Network - Potable Pipes 200 MM - Test (old) | 129d | 2026-06-03 A | 2026-11-01 A | RSZone 1Road 09Potable NetworkA53830 | 100% |  |  |  |  | Contract Price Original Scope [5246.93 SAR]; Pump Operator [16.68 h]; Equipment Operator [16.68 h]; Labour [44.8 h]; Potable Pipes 200 MM [209.38] | 5,246.93 | 5,246.93 | RD9 |
| RSZone 1Road 09Potable NetworkA53850-old |  | Zone 1 - Road 9 - Potable Network - Potable Pipes 200 MM - Backfilling (old) | 126d | 2026-06-07 A | 2026-11-01 A | RSZone 1Road 09Potable NetworkA53840-old | 100% |  |  |  |  | Contract Price Original Scope [5246.93 SAR]; Excavator Operator [16.68 h]; Compactor Operator [16.68 h]; Dump Truck Operator [16.68 h]; Water Truck Operator [16.68 h]; Labour [44.8 h]; Potable Pipes 200 MM [209.38] | 5,246.93 | 5,246.93 | RD9 |
| RSZone 1Road 09Potable NetworkA53840 |  | Zone 1 - Road 9 - Potable Network - Potable Pipes 200 MM - Test | 1d | 2026-11-09 | 2026-11-09 | RSZone 1Road 09Potable NetworkA53840-old |  |  |  | 99.4d | 0d | Contract Price Original Scope [1043.1 SAR]; Pump Operator [3.32 h]; Equipment Operator [3.32 h]; Labour [8.91 h]; Potable Pipes 200 MM [41.62] | 1,043.1 |  | RD9 |
| RSZone 1Road 09Potable NetworkA53850 |  | Zone 1 - Road 9 - Potable Network - Potable Pipes 200 MM - Backfilling | 1d | 2026-11-10 | 2026-11-10 | RSZone 1Road 09Potable NetworkA53850-old, RSZone 1Road 09Potable NetworkA53840 |  |  |  | 99.4d | 99.2d | Contract Price Original Scope [1043.1 SAR]; Excavator Operator [3.32 h]; Compactor Operator [3.32 h]; Dump Truck Operator [3.32 h]; Water Truck Operator [3.32 h]; Labour [8.91 h]; Potable Pipes 200 MM [41.62] | 1,043.1 |  | RD9 |
|  | 4 | **Potable Pipes 355 MM** |  | 2026-06-11 | 2026-11-12 |  |  |  |  |  |  |  |  |  |  |
| RSZone 1Road 09Potable NetworkA55300-old |  | Zone 1 - Road 9 - Potable Network - Potable Pipes 355 MM - Excavation (old) | 122d | 2026-06-11 A | 2026-11-01 A | RSZone 1Road 09Potable NetworkA53820 | 100% | 2026-06-11 | 2026-11-02 |  |  | Contract Price Original Scope [41281.1 SAR]; Excavator Operator [30 h]; Dump Truck Operator [30 h]; Labour [352.44 h]; Potable Pipes 355 MM [397] | 41,281.13 | 41,281.13 | RD9 |
| RSZone 1Road 09Potable NetworkA55310-old |  | Zone 1 - Road 9 - Potable Network - Potable Pipes 355 MM - Installation (old) | 120d | 2026-06-14 A | 2026-11-01 A | RSZone 1Road 09Potable NetworkA55300-old | 100% |  |  |  |  | Contract Price Original Scope [286239 SAR]; Labour [2443.76 h]; Potable Pipes 355 MM [393.25] | 286,238.75 | 286,238.75 | RD9 |
| RSZone 1Road 09Potable NetworkA55320-old |  | Zone 1 - Road 9 - Potable Network - Potable Pipes 355 MM - Test (old) | 118d | 2026-06-16 A | 2026-11-01 A | RSZone 1Road 09Potable NetworkA55310-old | 100% |  |  |  |  | Contract Price Original Scope [40868.3 SAR]; Pump Operator [19.8 h]; Equipment Operator [19.8 h]; Labour [348.91 h]; Potable Pipes 355 MM [393.03] | 40,868.32 | 40,868.32 | RD9 |
| RSZone 1Road 09Potable NetworkA55330-old |  | Zone 1 - Road 9 - Potable Network - Potable Pipes 355 MM - Backfilling (old) | 116d | 2026-06-18 A | 2026-11-01 A | RSZone 1Road 09Potable NetworkA55320-old | 100% | 2026-06-18 | 2026-11-02 |  |  | Contract Price Original Scope [40868.3 SAR]; Excavator Operator [19.8 h]; Compactor Operator [19.8 h]; Dump Truck Operator [19.8 h]; Water Truck Operator [19.8 h]; Labour [348.91 h]; Potable Pipes 355 MM [393.03] | 40,868.32 | 40,868.32 | RD9 |
| RSZone 1Road 09Potable NetworkA55300 |  | Zone 1 - Road 9 - Potable Network - Potable Pipes 355 MM - Excavation | 1d | 2026-11-09 | 2026-11-09 | RSZone 1Road 09Potable NetworkA55300-old |  |  |  | 97.4d | 0d | Contract Price Original Scope; Excavator Operator; Dump Truck Operator; Labour; Potable Pipes 355 MM |  |  | RD9 |
| RSZone 1Road 09Potable NetworkA55310 |  | Zone 1 - Road 9 - Potable Network - Potable Pipes 355 MM - Installation | 1d | 2026-11-10 | 2026-11-10 | RSZone 1Road 09Potable NetworkA55310-old, RSZone 1Road 09Potable NetworkA55300 |  |  |  | 97.4d | 0d | Contract Price Original Scope [2729.14 SAR]; Labour [23.3 h]; Potable Pipes 355 MM [3.75] | 2,729.14 |  | RD9 |
| RSZone 1Road 09Potable NetworkA55320 |  | Zone 1 - Road 9 - Potable Network - Potable Pipes 355 MM - Test | 1d | 2026-11-11 | 2026-11-11 | RSZone 1Road 09Potable NetworkA55320-old, RSZone 1Road 09Potable NetworkA55310 |  |  |  | 97.4d | 0d | Contract Price Original Scope [412.81 SAR]; Pump Operator [0.2 h]; Equipment Operator [0.2 h]; Labour [3.52 h]; Potable Pipes 355 MM [3.97] | 412.81 |  | RD9 |
| RSZone 1Road 09Potable NetworkA55330 |  | Zone 1 - Road 9 - Potable Network - Potable Pipes 355 MM - Backfilling | 1d | 2026-11-12 | 2026-11-12 | RSZone 1Road 09Potable NetworkA55330-old, RSZone 1Road 09Potable NetworkA55320 |  |  |  | 97.4d | 97.2d | Contract Price Original Scope [412.81 SAR]; Excavator Operator [0.2 h]; Compactor Operator [0.2 h]; Dump Truck Operator [0.2 h]; Water Truck Operator [0.2 h]; Labour [3.52 h]; Potable Pipes 355 MM [3.97] | 412.81 |  | RD9 |
|  | 5 | **Buried Valves** |  | 2026-06-21 | 2026-11-18 |  |  |  |  |  |  |  |  |  |  |
| RSZone 1Road 09Potable NetworkA55870-old |  | Zone 1 - Road 9 - Potable Network - Buried Valves - Excavation (old) | 114d | 2026-06-21 A | 2026-11-01 A | RSZone 1Road 09Potable NetworkA55460 | 100% |  |  |  |  | Contract Price Original Scope [3203.8 SAR]; Excavator Operator [24 h]; Dump Truck Operator [24 h]; Labour [27.35 h]; Buried Valves [20] | 3,203.8 | 3,203.8 | RD9 |
| RSZone 1Road 09Potable NetworkA55880-old |  | Zone 1 - Road 9 - Potable Network - Buried Valves - Installation (old) | 113d | 2026-06-22 A | 2026-11-01 A | RSZone 1Road 09Potable NetworkA55870-old | 100% |  |  |  |  | Contract Price Original Scope [41649.3 SAR]; Labour [355.58 h]; Buried Valves [20] | 41,649.34 | 41,649.34 | RD9 |
| RSZone 1Road 09Potable NetworkA55900-old |  | Zone 1 - Road 9 - Potable Network - Buried Valves - Test (old) | 111d | 2026-06-24 A | 2026-11-01 A | RSZone 1Road 09Potable NetworkA55880-old | 100% |  |  |  |  | Contract Price Original Scope [5766.83 SAR]; Pump Operator [7.2 h]; Equipment Operator [7.2 h]; Labour [49.23 h]; Buried Valves [9] | 5,766.83 | 5,766.83 | RD9 |
| RSZone 1Road 09Potable NetworkA55870 |  | Zone 1 - Road 9 - Potable Network - Buried Valves - Excavation | 1d | 2026-11-09 | 2026-11-09 | RSZone 1Road 09Potable NetworkA55870-old |  |  |  | 93.12d | 0d | Contract Price Original Scope [800.95 SAR]; Excavator Operator [6 h]; Dump Truck Operator [6 h]; Labour [6.84 h]; Buried Valves [5] | 800.95 |  | RD9 |
| RSZone 1Road 09Potable NetworkA55880 |  | Zone 1 - Road 9 - Potable Network - Buried Valves - Installation | 1d | 2026-11-10 | 2026-11-10 | RSZone 1Road 09Potable NetworkA55880-old, RSZone 1Road 09Potable NetworkA55870 |  |  |  | 93.12d | 0d | Contract Price Original Scope [10412.3 SAR]; Labour [88.9 h]; Buried Valves [5] | 10,412.33 |  | RD9 |
| RSZone 1Road 09Potable NetworkA55900 |  | Zone 1 - Road 9 - Potable Network - Buried Valves - Test | 1.28d | 2026-11-11 | 2026-11-12 | RSZone 1Road 09Potable NetworkA55900-old, RSZone 1Road 09Potable NetworkA55880 |  |  |  | 93.12d | 0d | Contract Price Original Scope [10252.1 SAR]; Pump Operator [12.8 h]; Equipment Operator [12.8 h]; Labour [87.53 h]; Buried Valves [16] | 10,252.15 |  | RD9 |
| RSZone 1Road 09Potable NetworkA55890 |  | Zone 1 - Road 9 - Potable Network - Buried Valves - Surface Box | 3d | 2026-11-12 | 2026-11-16 | RSZone 1Road 09Potable NetworkA55900, RSZone 1Road 09Potable NetworkA55870, RSZone 1Road 09Potable NetworkA55880 |  |  |  | 93.12d | 0d | Labour; Buried Valves [25] |  |  | RD9 |
| RSZone 1Road 09Potable NetworkA55910 |  | Zone 1 - Road 9 - Potable Network - Buried Valves - Backfilling | 2d | 2026-11-16 | 2026-11-18 | RSZone 1Road 09Potable NetworkA55890 |  |  |  | 93.12d | 92.92d | Contract Price Original Scope [8009.49 SAR]; Excavator Operator [20 h]; Compactor Operator [20 h]; Dump Truck Operator [20 h]; Water Truck Operator [20 h]; Labour [68.38 h]; Buried Valves [25] | 8,009.49 |  | RD9 |

| ID | WBS | Activity | Duration | Start | Finish | Predecessors | Complete | Planned start | Planned finish | Total float | Free float | Resources | Cost | Actual cost | MODON |
| --- | --- | --- | --- | --- | --- | --- | --- | --- | --- | --- | --- | --- | --- | --- | --- |
|  | 6 | **Fittings** |  | 2025-11-06 | 2026-11-11 |  |  |  |  |  |  |  |  |  |  |
|  | 2 | **Elbows** |  | 2025-11-06 | 2025-11-10 |  |  |  |  |  |  |  |  |  |  |
| RSZone 1Road 09Potable NetworkA55460 |  | Zone 1 - Road 9 - Potable Network - Elbows - Installation | 4d | 2025-11-06 A | 2025-11-10 A | RSZone 1Road 09Potable NetworkA53830 | 100% | 2025-11-06 | 2025-11-11 |  |  | Contract Price Original Scope [15010 SAR]; Labour [128.15 h]; Fittings - Elbows (all sizes) [8] | 15,009.96 | 15,009.96 | RD9 |
|  | 3 | **Tees** |  | 2026-06-15 | 2026-11-10 |  |  |  |  |  |  |  |  |  |  |
| RSZone 1Road 09Potable NetworkA55470-old |  | Zone 1 - Road 9 - Potable Network - Tees - Installation (old) | 119d | 2026-06-15 A | 2026-11-01 A | RSZone 1Road 09Potable NetworkA55460 | 100% |  |  |  |  | Contract Price Original Scope [23996.8 SAR]; Labour [204.87 h]; Fittings - Tees (all sizes) [8] | 23,996.82 | 23,996.82 | RD9 |
| RSZone 1Road 09Potable NetworkA55470 |  | Zone 1 - Road 9 - Potable Network - Tees - Installation | 1.67d | 2026-11-09 | 2026-11-10 | RSZone 1Road 09Potable NetworkA55470-old |  |  |  | 99.73d | 99.53d | Contract Price Original Scope [29996 SAR]; Labour [256.09 h]; Fittings - Tees (all sizes) [10] | 29,996.02 |  | RD9 |
|  | 5 | **End Cap** |  | 2025-11-09 | 2025-11-10 |  |  |  |  |  |  |  |  |  |  |
| RSZone 1Road 09Potable NetworkA55480 |  | Zone 1 - Road 9 - Potable Network - End Cap - Installation | 2d | 2025-11-09 A | 2025-11-10 A | RSZone 1Road 09Potable NetworkA55460 | 100% |  |  |  |  | Contract Price Original Scope [730.98 SAR]; Labour [6.24 h]; Fittings - End Caps (all sizes) [1] | 730.98 | 730.98 | RD9 |
|  | 4 | **Reducer** |  | 2026-11-09 | 2026-11-11 |  |  |  |  |  |  |  |  |  |  |
| RSZone 1Road 09Potable NetworkA55490 |  | Zone 1 - Road 9 - Potable Network - Reducer - Installation | 3d | 2026-11-09 | 2026-11-11 | RSZone 1Road 09Potable NetworkA55480 |  |  |  | 98.4d | 98.2d | Labour; Fittings - Reducers (all sizes) [7] |  |  | RD9 |
|  | 7 | **Washout Valves** |  | 2026-11-26 | 2026-12-06 |  |  |  |  |  |  |  |  |  |  |
| RSZone 1Road 09Potable NetworkA56530 |  | Zone 1 - Road 9 - Potable Network - Washout Valves - Installation | 3d | 2026-11-26 | 2026-11-30 | RSZone 1Road 02Potable NetworkA89040 |  |  |  | 0.2d | 0d | Labour; Washout / Air / other Valves [2] |  |  | RD9 |
| RSZone 1Road 09Potable NetworkA56540 |  | Zone 1 - Road 9 - Potable Network - Washout Valves - Surface Box | 3d | 2026-11-30 | 2026-12-03 | RSZone 1Road 09Potable NetworkA56530 |  |  |  | 78.3d | 0d | Labour; Washout / Air / other Valves [2] |  |  | RD9 |
| RSZone 1Road 09Potable NetworkA56550 |  | Zone 1 - Road 9 - Potable Network - Washout Valves - Test | 2d | 2026-12-03 | 2026-12-06 | RSZone 1Road 09Potable NetworkA56540 |  |  |  | 78.3d | 78.1d | Pump Operator [20 h]; Equipment Operator [20 h]; Labour; Washout / Air / other Valves [2] |  |  | RD9 |
|  | 9 | **Isolation Valve Chambers** |  | 2025-11-30 | 2026-11-24 |  |  |  |  |  |  |  |  |  |  |
| RSZone 1Road 09Potable NetworkA57100 |  | Zone 1 - Road 9 - Potable Network - Isolation Valve Chambers - Excavation | 4.9d | 2025-11-30 A | 2025-12-04 A | RSZone 1Road 09Potable NetworkA55480 | 100% |  |  |  |  | Contract Price Original Scope [5711.04 SAR]; Labour [48.76 h]; Isolation Valve Chambers [4] | 5,711.04 | 5,711.04 | RD9 |
| RSZone 1Road 09Potable NetworkA57110 |  | Zone 1 - Road 9 - Potable Network - Isolation Valve Chambers - Footings | 4.9d | 2025-12-07 A | 2025-12-11 A | RSZone 1Road 09Potable NetworkA57100 | 100% |  |  |  |  | Contract Price Original Scope [17133.1 SAR]; Labour [146.27 h]; Isolation Valve Chambers [4] | 17,133.12 | 17,133.12 | RD9 |
| RSZone 1Road 09Potable NetworkA57120 |  | Zone 1 - Road 9 - Potable Network - Isolation Valve Chambers - Walls | 7d | 2025-12-14 A | 2025-12-21 A | RSZone 1Road 09Potable NetworkA57110 | 100% |  |  |  |  | Contract Price Original Scope [22844.2 SAR]; Labour [195.03 h]; Isolation Valve Chambers [4] | 22,844.16 | 22,844.16 | RD9 |
| RSZone 1Road 09Potable NetworkA57130 |  | Zone 1 - Road 9 - Potable Network - Isolation Valve Chambers - Slab | 3d | 2026-11-09 | 2026-11-11 | RSZone 1Road 09Potable NetworkA57120 |  |  |  | 87.6d | 0d | Contract Price Original Scope [289835 SAR]; Labour [2474.46 h]; Isolation Valve Chambers [29] | 289,835.22 |  | RD9 |
| RSZone 1Road 09Potable NetworkA57150 |  | Zone 1 - Road 9 - Potable Network - Isolation Valve Chambers - Internal Isolation | 3d | 2026-11-12 | 2026-11-15 | RSZone 1Road 09Potable NetworkA57130 |  |  |  | 87.6d | 0d | Contract Price Original Scope [77099 SAR]; Labour [658.23 h]; Isolation Valve Chambers [54] | 77,099.02 |  | RD9 |
| RSZone 1Road 09Potable NetworkA57140 |  | Zone 1 - Road 9 - Potable Network - Isolation Valve Chambers - D.I Cover | 3d | 2026-11-16 | 2026-11-18 | RSZone 1Road 09Potable NetworkA57150 |  |  |  | 87.6d | 0d | Contract Price Original Scope [154198 SAR]; Labour [1316.46 h]; Isolation Valve Chambers [54] | 154,198.05 |  | RD9 |
| RSZone 1Road 09Potable NetworkA57160 |  | Zone 1 - Road 9 - Potable Network - Isolation Valve Chambers - External Isolation | 2.8d | 2026-11-19 | 2026-11-22 | RSZone 1Road 09Potable NetworkA57140 |  |  |  | 87.6d | 0d | Labour; Isolation Valve Chambers |  |  | RD9 |
| RSZone 1Road 09Potable NetworkA57170 |  | Zone 1 - Road 9 - Potable Network - Isolation Valve Chambers - Backfilling | 2d | 2026-11-22 | 2026-11-24 | RSZone 1Road 09Potable NetworkA57160 |  |  |  | 87.6d | 87.4d | Contract Price Original Scope [41405 SAR]; Excavator Operator [20 h]; Compactor Operator [20 h]; Dump Truck Operator [20 h]; Water Truck Operator [20 h]; Labour [353.49 h]; Isolation Valve Chambers [29] | 41,405.03 |  | RD9 |
|  | 1 | **Thurst Blocks** |  | 2026-06-18 | 2026-11-10 |  |  |  |  |  |  |  |  |  |  |
| RSZone 1Road 09Potable NetworkA55710-old |  | Zone 1 - Road 9 - Potable Network - Thurst Blocks - Thrust Block (old) | 116d | 2026-06-18 A | 2026-11-01 A | RSZone 1Road 09Potable NetworkA57100 | 100% | 2026-06-18 | 2026-11-02 |  |  | Contract Price Original Scope [16866.7 SAR]; Crane Operator [9.58 h]; Pump Operator [9.58 h]; Equipment Operator [9.58 h]; Labour [144 h]; Thrust Blocks [5] | 16,866.7 | 16,866.7 | RD9 |
| RSZone 1Road 09Potable NetworkA55710 |  | Zone 1 - Road 9 - Potable Network - Thurst Blocks - Thrust Block | 1.34d | 2026-11-09 | 2026-11-10 | RSZone 1Road 09Potable NetworkA55710-old |  |  |  | 99.06d | 0d | Contract Price Original Scope [23613.4 SAR]; Crane Operator [13.42 h]; Pump Operator [13.42 h]; Equipment Operator [13.42 h]; Labour [201.6 h]; Thrust Blocks [7] | 23,613.39 |  | RD9 |

| ID | WBS | Activity | Duration | Start | Finish | Predecessors | Complete | Planned start | Planned finish | Total float | Free float | Resources | Cost | Actual cost | MODON |
| --- | --- | --- | --- | --- | --- | --- | --- | --- | --- | --- | --- | --- | --- | --- | --- |
|  | 3 | **Sand Bedding** |  | 2026-06-23 | 2026-11-11 |  |  |  |  |  |  |  |  |  |  |
| RSZone 1Road 09Potable NetworkA55760-old |  | Zone 1 - Road 9 - Potable Network - Sand Bedding - Bedding (old) | 112d | 2026-06-23 A | 2026-11-01 A | RSZone 1Road 09Potable NetworkA55710-old | 100% |  |  |  |  | Contract Price Original Scope [11972.6 SAR]; Compactor Operator [19.88 h]; Equipment Operator [19.88 h]; Water Truck Operator [19.88 h]; Labour [102.22 h]; Sand Bedding [644.22] | 11,972.61 | 11,972.61 | RD9 |
| RSZone 1Road 09Potable NetworkA55760 |  | Zone 1 - Road 9 - Potable Network - Sand Bedding - Bedding | 1d | 2026-11-10 | 2026-11-11 | RSZone 1Road 09Potable NetworkA55760-old, RSZone 1Road 09Potable NetworkA55710 |  |  |  | 99.06d | 98.86d | Contract Price Original Scope [70.25 SAR]; Compactor Operator [0.12 h]; Equipment Operator [0.12 h]; Water Truck Operator [0.12 h]; Labour [0.6 h]; Sand Bedding [3.78] | 70.25 |  | RD9 |
|  | 10 | **FIRE HYDRANT** |  | 2026-06-30 | 2026-11-16 |  |  |  |  |  |  |  |  |  |  |
| RSZone 1Road 09Potable NetworkA57480-old |  | Zone 1 - Road 9 - Potable Network - FIRE HYDRANT - Excavation (old) | 106d | 2026-06-30 A | 2026-11-01 A | RSZone 1Road 09Potable NetworkA57100 | 100% |  |  |  |  | Contract Price Original Scope [27741 SAR]; Excavator Operator [28.57 h]; Dump Truck Operator [28.57 h]; Labour [236.84 h]; Fire Hydrant [20] | 27,741.02 | 27,741.02 | RD9 |
| RSZone 1Road 09Potable NetworkA57490-old |  | Zone 1 - Road 9 - Potable Network - FIRE HYDRANT - Buried Gate Valve Installation (old) | 104d | 2026-07-02 A | 2026-11-01 A | RSZone 1Road 09Potable NetworkA57500-old | 100% | 2026-07-02 | 2026-11-02 |  |  | Labour; Fire Hydrant [20] |  |  | RD9 |
| RSZone 1Road 09Potable NetworkA57500-old |  | Zone 1 - Road 9 - Potable Network - FIRE HYDRANT - Fire Hydrant Installation (old) | 102d | 2026-07-05 A | 2026-11-01 A | RSZone 1Road 09Potable NetworkA57480-old | 100% |  |  |  |  | Contract Price Original Scope [202509 SAR]; Labour [1728.92 h]; Fire Hydrant [20] | 202,509.41 | 202,509.41 | RD9 |
| RSZone 1Road 09Potable NetworkA57480 |  | Zone 1 - Road 9 - Potable Network - FIRE HYDRANT - Excavation | 1d | 2026-11-02 A | 2026-11-05 A | RSZone 1Road 09Potable NetworkA57480-old | 100% | 2026-11-02 | 2026-11-02 |  |  | Contract Price Original Scope [1391.91 SAR]; Excavator Operator [1.43 h]; Dump Truck Operator [1.43 h]; Labour [11.88 h]; Fire Hydrant [1] | 1,391.91 | 1,391.91 | RD9 |
| RSZone 1Road 09Potable NetworkA57490 |  | Zone 1 - Road 9 - Potable Network - FIRE HYDRANT - Buried Gate Valve Installation | 1.1d | 2026-11-02 A | 2026-11-05 A | RSZone 1Road 09Potable NetworkA57490-old, RSZone 1Road 09Potable NetworkA57500 | 100% | 2026-11-04 | 2026-11-05 |  |  | Labour; Fire Hydrant [1] |  |  | RD9 |
| RSZone 1Road 09Potable NetworkA57500 |  | Zone 1 - Road 9 - Potable Network - FIRE HYDRANT - Fire Hydrant Installation | 1d | 2026-11-02 A | 2026-11-05 A | RSZone 1Road 09Potable NetworkA57500-old, RSZone 1Road 09Potable NetworkA57480 | 100% | 2026-11-03 | 2026-11-03 |  |  | Contract Price Original Scope [10160.9 SAR]; Labour [86.75 h]; Fire Hydrant [1] | 10,160.92 | 10,160.92 | RD9 |
| RSZone 1Road 09Potable NetworkA57510 |  | Zone 1 - Road 9 - Potable Network - FIRE HYDRANT - Surface Box | 3d | 2026-11-09 | 2026-11-11 | RSZone 1Road 09Potable NetworkA57490, RSZone 1Road 09Potable NetworkA57480, RSZone 1Road 09Potable NetworkA57500 |  |  |  | 94.4d | 0d | Labour; Fire Hydrant [21] |  |  | RD9 |
| RSZone 1Road 09Potable NetworkA57520 |  | Zone 1 - Road 9 - Potable Network - FIRE HYDRANT - Test | 2d | 2026-11-12 | 2026-11-14 | RSZone 1Road 09Potable NetworkA57510 |  |  |  | 94.4d | 0d | Contract Price Original Scope [20393 SAR]; Pump Operator [20 h]; Equipment Operator [20 h]; Labour [174.11 h]; Fire Hydrant [21] | 20,393.05 |  | RD9 |
| RSZone 1Road 09Potable NetworkA57530 |  | Zone 1 - Road 9 - Potable Network - FIRE HYDRANT - Backfilling | 2d | 2026-11-15 | 2026-11-16 | RSZone 1Road 09Potable NetworkA57520 |  |  |  | 94.4d | 94.2d | Contract Price Original Scope [29132.9 SAR]; Excavator Operator [20 h]; Compactor Operator [20 h]; Dump Truck Operator [20 h]; Water Truck Operator [20 h]; Labour [248.72 h]; Fire Hydrant [21] | 29,132.92 |  | RD9 |
|  | 5 | **Lateral Irrigation Network** |  | 2025-08-03 | 2027-01-16 |  |  |  |  |  |  |  |  |  |  |
|  | 6 | **HDPE Pipes** |  | 2025-08-03 | 2026-11-09 |  |  |  |  |  |  |  |  |  |  |
|  | 2 | **HDPE Pipes 125 MM** |  | 2025-08-03 | 2025-08-19 |  |  |  |  |  |  |  |  |  |  |
| RSZone 1Road 09Irrigation NetworkA31300 |  | Zone 1 - Road 9 - Lateral Irrigation Network - HDPE Pipes 125 MM - Excavation | 4.9d | 2025-08-03 A | 2025-08-07 A | RSZone 1Road 02Irrigation NetworkA31030 | 100% |  |  |  |  | Contract Price Original Scope [9022.9 SAR]; Excavator Operator [30 h]; Dump Truck Operator [30 h]; Labour [77.03 h]; HDPE Pipes 125 MM [650] | 9,022.9 | 9,022.9 | RD9 |
| RSZone 1Road 09Irrigation NetworkA31310 |  | Zone 1 - Road 9 - Lateral Irrigation Network - HDPE Pipes 125 MM - Pipe Installation | 4d | 2025-08-10 A | 2025-08-13 A | RSZone 1Road 09Irrigation NetworkA31300 | 100% |  |  |  |  | Contract Price Original Scope [63160.3 SAR]; Excavator Operator [40 h]; Crane Operator [40 h]; Equipment Operator [40 h]; Labour [539.23 h]; HDPE Pipes 125 MM [650] | 63,160.3 | 63,160.3 | RD9 |
| RSZone 1Road 09Irrigation NetworkA31320 |  | Zone 1 - Road 9 - Lateral Irrigation Network - HDPE Pipes 125 MM - Test | 0.9d | 2025-08-14 A | 2025-08-15 A | RSZone 1Road 09Irrigation NetworkA31310 | 100% | 2025-08-14 | 2025-08-14 |  |  | Contract Price Original Scope [9022.9 SAR]; Pump Operator [20 h]; Equipment Operator [20 h]; Labour [77.03 h]; HDPE Pipes 125 MM [650] | 9,022.9 | 9,022.9 | RD9 |
| RSZone 1Road 09Irrigation NetworkA31330 |  | Zone 1 - Road 9 - Lateral Irrigation Network - HDPE Pipes 125 MM - Backfilling | 3d | 2025-08-17 A | 2025-08-19 A | RSZone 1Road 09Irrigation NetworkA31320 | 100% |  |  |  |  | Contract Price Original Scope [9022.9 SAR]; Excavator Operator [20 h]; Compactor Operator [20 h]; Dump Truck Operator [20 h]; Water Truck Operator [20 h]; Labour [77.03 h]; HDPE Pipes 125 MM [650] | 9,022.9 | 9,022.9 | RD9 |
|  | 1 | **HDPE Pipes 160 MM** |  | 2025-08-13 | 2025-08-27 |  |  |  |  |  |  |  |  |  |  |
| RSZone 1Road 09Irrigation NetworkA32450 |  | Zone 1 - Road 9 - Lateral Irrigation Network - HDPE Pipes 160 MM - Excavation | 4d | 2025-08-13 A | 2025-08-17 A | RSZone 1Road 09Irrigation NetworkA31330 | 100% |  |  |  |  | Contract Price Original Scope [8961.53 SAR]; Excavator Operator [30 h]; Dump Truck Operator [30 h]; Labour [76.51 h]; HDPE Pipes 160 MM [606] | 8,961.53 | 8,961.53 | RD9 |
| RSZone 1Road 09Irrigation NetworkA32460 |  | Zone 1 - Road 9 - Lateral Irrigation Network - HDPE Pipes 160 MM - Pipe Installation | 3.9d | 2025-08-18 A | 2025-08-21 A | RSZone 1Road 09Irrigation NetworkA32450 | 100% |  |  |  |  | Contract Price Original Scope [62730.7 SAR]; Excavator Operator [40 h]; Crane Operator [40 h]; Equipment Operator [40 h]; Labour [535.56 h]; HDPE Pipes 160 MM [606] | 62,730.7 | 62,730.7 | RD9 |
| RSZone 1Road 09Irrigation NetworkA32470 |  | Zone 1 - Road 9 - Lateral Irrigation Network - HDPE Pipes 160 MM - Test | 2d | 2025-08-24 A | 2025-08-25 A | RSZone 1Road 09Irrigation NetworkA32460 | 100% |  |  |  |  | Contract Price Original Scope [8961.53 SAR]; Pump Operator [20 h]; Equipment Operator [20 h]; Labour [76.51 h]; HDPE Pipes 160 MM [606] | 8,961.53 | 8,961.53 | RD9 |
| RSZone 1Road 09Irrigation NetworkA32480 |  | Zone 1 - Road 9 - Lateral Irrigation Network - HDPE Pipes 160 MM - Backfilling | 2d | 2025-08-26 A | 2025-08-27 A | RSZone 1Road 09Irrigation NetworkA32470 | 100% |  |  |  |  | Contract Price Original Scope [8961.53 SAR]; Excavator Operator [20 h]; Compactor Operator [20 h]; Dump Truck Operator [20 h]; Water Truck Operator [20 h]; Labour [76.51 h]; HDPE Pipes 160 MM [606] | 8,961.53 | 8,961.53 | RD9 |

| ID | WBS | Activity | Duration | Start | Finish | Predecessors | Complete | Remaining | Planned start | Planned finish | Total float | Free float | Resources | Cost | Actual cost | MODON |
| --- | --- | --- | --- | --- | --- | --- | --- | --- | --- | --- | --- | --- | --- | --- | --- | --- |
|  | 6 | **HDPE Pipes 280 MM** |  | 2025-08-17 | 2026-11-09 |  |  |  |  |  |  |  |  |  |  |  |
| RSZone 1Road 09Irrigation NetworkA32530 |  | Zone 1 - Road 9 - Lateral Irrigation Network - HDPE Pipes 280 MM - Excavation | 3d | 2025-08-17 A | 2025-08-19 A | RSZone 1Road 09Irrigation NetworkA32480 | 100% |  |  |  |  |  | Contract Price Original Scope [2556.18 SAR]; Excavator Operator [30 h]; Dump Truck Operator [30 h]; Labour [21.82 h]; HDPE Pipes 280 MM [76] | 2,556.18 | 2,556.18 | RD9 |
| RSZone 1Road 09Irrigation NetworkA32540 |  | Zone 1 - Road 9 - Lateral Irrigation Network - HDPE Pipes 280 MM - Pipe Installation | 7d | 2025-08-20 A | 2025-08-27 A | RSZone 1Road 09Irrigation NetworkA32530 | 100% |  |  |  |  |  | Contract Price Original Scope [17893.3 SAR]; Excavator Operator [40 h]; Crane Operator [40 h]; Equipment Operator [40 h]; Labour [152.76 h]; HDPE Pipes 280 MM [76] | 17,893.29 | 17,893.29 | RD9 |
| RSZone 1Road 09Irrigation NetworkA32550 |  | Zone 1 - Road 9 - Lateral Irrigation Network - HDPE Pipes 280 MM - Test | 2d | 2026-11-03 A | 2026-11-09 | RSZone 1Road 09Irrigation NetworkA32540 | 88% | 0.24d | 2026-11-02 | 2026-11-03 | 101.16d | 0d | Contract Price Original Scope [2556.18 SAR]; Pump Operator [20 h]; Equipment Operator [20 h]; Labour [21.82 h]; HDPE Pipes 280 MM [76] | 2,556.18 | 2,247.31 | RD9 |
| RSZone 1Road 09Irrigation NetworkA32560 |  | Zone 1 - Road 9 - Lateral Irrigation Network - HDPE Pipes 280 MM - Backfilling | 2d | 2026-11-03 A | 2026-11-09 | RSZone 1Road 09Irrigation NetworkA32550 SS | 88% | 0.24d | 2026-11-04 | 2026-11-05 | 101.16d | 100.52d | Contract Price Original Scope [2556.18 SAR]; Excavator Operator [20 h]; Compactor Operator [20 h]; Dump Truck Operator [20 h]; Water Truck Operator [20 h]; Labour [21.82 h]; HDPE Pipes 280 MM [76] | 2,556.18 | 2,247.31 | RD9 |
|  | 4 | **HDPE Pipes 500 MM** |  | 2025-08-17 | 2025-09-01 |  |  |  |  |  |  |  |  |  |  |  |
| RSZone 1Road 09Irrigation NetworkA32570 |  | Zone 1 - Road 9 - Lateral Irrigation Network - HDPE Pipes 500 MM - Excavation | 3d | 2025-08-17 A | 2025-08-19 A | RSZone 1Road 09Irrigation NetworkA32540 | 100% |  |  |  |  |  | Contract Price Original Scope [12294.3 SAR]; Excavator Operator [30 h]; Dump Truck Operator [30 h]; Labour [104.96 h]; HDPE Pipes 500 MM [104] | 12,294.26 | 12,294.26 | RD9 |
| RSZone 1Road 09Irrigation NetworkA32580 |  | Zone 1 - Road 9 - Lateral Irrigation Network - HDPE Pipes 500 MM - Pipe Installation | 4d | 2025-08-20 A | 2025-08-24 A | RSZone 1Road 09Irrigation NetworkA32570 | 100% |  |  |  |  |  | Contract Price Original Scope [86059.8 SAR]; Excavator Operator [40 h]; Crane Operator [40 h]; Equipment Operator [40 h]; Labour [734.73 h]; HDPE Pipes 500 MM [104] | 86,059.79 | 86,059.79 | RD9 |
| RSZone 1Road 09Irrigation NetworkA32590 |  | Zone 1 - Road 9 - Lateral Irrigation Network - HDPE Pipes 500 MM - Test | 2d | 2025-08-25 A | 2025-08-26 A | RSZone 1Road 09Irrigation NetworkA32580 | 100% |  |  |  |  |  | Contract Price Original Scope [12294.3 SAR]; Pump Operator [20 h]; Equipment Operator [20 h]; Labour [104.96 h]; HDPE Pipes 500 MM [104] | 12,294.26 | 12,294.26 | RD9 |
| RSZone 1Road 09Irrigation NetworkA32600 |  | Zone 1 - Road 9 - Lateral Irrigation Network - HDPE Pipes 500 MM - Backfilling | 5d | 2025-08-27 A | 2025-09-01 A | RSZone 1Road 09Irrigation NetworkA32590 | 100% |  |  |  |  |  | Contract Price Original Scope [12294.3 SAR]; Excavator Operator [20 h]; Compactor Operator [20 h]; Dump Truck Operator [20 h]; Water Truck Operator [20 h]; Labour [104.96 h]; HDPE Pipes 500 MM [104] | 12,294.26 | 12,294.26 | RD9 |
|  | 1 | **HDPE Fitting** |  | 2025-08-05 | 2026-11-14 |  |  |  |  |  |  |  |  |  |  |  |
|  | 1 | **Elbows** |  | 2025-08-05 | 2026-11-14 |  |  |  |  |  |  |  |  |  |  |  |
|  | 2 | **Elbows for Pipe 160 MM** |  | 2025-08-05 | 2025-08-07 |  |  |  |  |  |  |  |  |  |  |  |
| RSZone 1Road 09Irrigation NetworkA31590 |  | Zone 1 - Road 9 - Lateral Irrigation Network - Elbows for Pipe 160 MM - Installation | 2.9d | 2025-08-05 A | 2025-08-07 A | RSZone 1Road 09Irrigation NetworkA32600 | 100% |  |  |  |  |  | Contract Price Original Scope [10395.7 SAR]; Labour [88.75 h]; Fittings - Elbows (all sizes) [8] | 10,395.66 | 10,395.66 | RD9 |
|  | 3 | **Elbows for Pipe 280 MM** |  | 2026-05-17 | 2026-11-10 |  |  |  |  |  |  |  |  |  |  |  |
| RSZone 1Road 09Irrigation NetworkA31610- |  | Zone 1 - Road 9 - Lateral Irrigation Network - Elbows for Pipe 280 MM - Installation (old) | 144d | 2026-05-17 A | 2026-11-01 A | RSZone 1Road 09Irrigation NetworkA31590 | 100% |  |  |  |  |  | Contract Price Original Scope [6497.29 SAR]; Labour [55.47 h]; Fittings - Elbows (all sizes) [5] | 6,497.29 | 6,497.29 | RD9 |
| RSZone 1Road 09Irrigation NetworkA31610- |  | Zone 1 - Road 9 - Lateral Irrigation Network - Elbows for Pipe 280 MM - Installation (old) | 1.33d | 2026-11-09 | 2026-11-10 | RSZone 1Road 09Irrigation NetworkA31610- |  |  |  |  | 89.07d | 0d | Contract Price Original Scope [5197.83 SAR]; Labour [44.38 h]; Fittings - Elbows (all sizes) [4] | 5,197.83 |  | RD9 |
|  | 4 | **Elbows for Pipe 500 MM** |  | 2026-11-10 | 2026-11-14 |  |  |  |  |  |  |  |  |  |  |  |
| RSZone 1Road 09Irrigation NetworkA31620 |  | Zone 1 - Road 9 - Lateral Irrigation Network - Elbows for Pipe 500 MM - Installation | 3d | 2026-11-10 | 2026-11-14 | RSZone 1Road 09Irrigation NetworkA31610- |  |  |  |  | 89.07d | 0d | Contract Price Original Scope [5197.83 SAR]; Labour [44.38 h]; Fittings - Elbows (all sizes) [4] | 5,197.83 |  | RD9 |
|  | 3 | **End Cap** |  | 2025-08-06 | 2025-08-10 |  |  |  |  |  |  |  |  |  |  |  |
|  | 1 | **End Cap for Pipe 125 MM** |  | 2025-08-06 | 2025-08-10 |  |  |  |  |  |  |  |  |  |  |  |
| RSZone 1Road 09Irrigation NetworkA31730 |  | Zone 1 - Road 9 - Lateral Irrigation Network - End Cap for Pipe 125 MM - Installation | 4d | 2025-08-06 A | 2025-08-10 A | RSZone 1Road 09Irrigation NetworkA31590 | 100% |  |  |  |  |  | Contract Price Original Scope [8966.17 SAR]; Labour [76.55 h]; Fittings - End Caps (all sizes) [24] | 8,966.17 | 8,966.17 | RD9 |
|  | 2 | **Tees** |  | 2026-07-15 | 2026-11-14 |  |  |  |  |  |  |  |  |  |  |  |
|  | 1 | **Tees for Pipe 160 MM** |  | 2026-07-15 | 2026-07-19 |  |  |  |  |  |  |  |  |  |  |  |
| RSZone 1Road 09Irrigation NetworkA89100 |  | Zone 1 - Road 9 - Lateral Irrigation Network - Tees for Pipe 160 MM - Installation | 4d | 2026-07-15 A | 2026-07-19 A | RSZone 1Road 09Irrigation NetworkA31730, RSZone 1Road 09Irrigation NetworkA31730 FF | 100% |  |  |  |  |  | Contract Price Original Scope [15360.6 SAR]; Labour [131.14 h]; Fittings - Tees (all sizes) [10] | 15,360.6 | 15,360.6 | RD9 |

| ID | WBS | Activity | Duration | Start | Finish | Predecessors | Complete | Total float | Free float | Resources | Cost | Actual cost | MODON |
| --- | --- | --- | --- | --- | --- | --- | --- | --- | --- | --- | --- | --- | --- |
|  | 2 | **Tees for Pipe 280 MM** |  | 2026-10-05 | 2026-11-10 |  |  |  |  |  |  |  |  |
| RSZone 1Road 09Irrigation NetworkA89110- |  | Zone 1 - Road 9 - Lateral Irrigation Network - Tees for Pipe 280 MM - Installation (old) | 24d | 2026-10-05 A | 2026-11-01 A | RSZone 1Road 09Irrigation NetworkA89100 | 100% |  |  | Contract Price Original Scope [7680.3 SAR]; Labour [65.57 h]; Fittings - Tees (all sizes) [5] | 7,680.3 | 7,680.3 | RD9 |
| RSZone 1Road 09Irrigation NetworkA89110- |  | Zone 1 - Road 9 - Lateral Irrigation Network - Tees for Pipe 280 MM - Installation (old) | 1.33d | 2026-11-09 | 2026-11-10 | RSZone 1Road 09Irrigation NetworkA89110- |  | 97.07d | 0d | Contract Price Original Scope [6144.24 SAR]; Labour [52.46 h]; Fittings - Tees (all sizes) [4] | 6,144.24 |  | RD9 |
|  | 3 | **Tees for Pipe 500 MM** |  | 2026-11-10 | 2026-11-14 |  |  |  |  |  |  |  |  |
| RSZone 1Road 09Irrigation NetworkA89120 |  | Zone 1 - Road 9 - Lateral Irrigation Network - Tees for Pipe 500 MM - Installation | 3d | 2026-11-10 | 2026-11-14 | RSZone 1Road 09Irrigation NetworkA89110- |  | 97.07d | 96.43d | Contract Price Original Scope [7680.3 SAR]; Labour [65.57 h]; Fittings - Tees (all sizes) [5] | 7,680.3 |  | RD9 |
|  | 11 | **Valves** |  | 2026-05-18 | 2026-11-23 |  |  |  |  |  |  |  |  |
|  | 1 | **Buried Valves** |  | 2026-05-18 | 2026-11-18 |  |  |  |  |  |  |  |  |
| RSZone 1Road 09Irrigation NetworkA31250- |  | Zone 1 - Road 9 - Lateral Irrigation Network - Buried Valves - Excavation (old) | 143d | 2026-05-18 A | 2026-11-01 A | RSZone 1Road 09Irrigation NetworkA89100 | 100% |  |  | Contract Price Original Scope [6256.36 SAR]; Excavator Operator [26.83 h]; Dump Truck Operator [26.83 h]; Labour [53.41 h]; Buried Valves [93.02] | 6,256.36 | 6,256.36 | RD9 |
| RSZone 1Road 09Irrigation NetworkA31830- |  | Zone 1 - Road 9 - Lateral Irrigation Network - Buried Valves - Installation (old) | 141d | 2026-05-20 A | 2026-11-01 A | RSZone 1Road 09Irrigation NetworkA31250- | 100% |  |  | Contract Price Original Scope [81332.7 SAR]; Labour [694.38 h]; Buried Valves [93.02] | 81,332.69 | 81,332.69 | RD9 |
| RSZone 1Road 09Irrigation NetworkA31250- |  | Zone 1 - Road 9 - Lateral Irrigation Network - Buried Valves - Excavation (old) | 1d | 2026-11-09 | 2026-11-09 | RSZone 1Road 09Irrigation NetworkA31250- |  | 91.4d | 0d | Contract Price Original Scope [738.33 SAR]; Excavator Operator [3.17 h]; Dump Truck Operator [3.17 h]; Labour [6.3 h]; Buried Valves [10.98] | 738.33 |  | RD9 |
| RSZone 1Road 09Irrigation NetworkA31830- |  | Zone 1 - Road 9 - Lateral Irrigation Network - Buried Valves - Installation (old) | 1d | 2026-11-10 | 2026-11-10 | RSZone 1Road 09Irrigation NetworkA31830-, RSZone 1Road 09Irrigation NetworkA31250- |  | 91.4d | 0d | Contract Price Original Scope [9598.27 SAR]; Labour [81.95 h]; Buried Valves [10.98] | 9,598.27 |  | RD9 |
| RSZone 1Road 09Irrigation NetworkA31840 |  | Zone 1 - Road 9 - Lateral Irrigation Network - Buried Valves - Surface Box | 3d | 2026-11-11 | 2026-11-14 | RSZone 1Road 09Irrigation NetworkA31830-, RSZone 1Road 09Irrigation NetworkA31250- |  | 91.4d | 0d | Labour; Buried Valves [104] |  |  | RD9 |
| RSZone 1Road 09Irrigation NetworkA31850 |  | Zone 1 - Road 9 - Lateral Irrigation Network - Buried Valves - Test | 2d | 2026-11-15 | 2026-11-16 | RSZone 1Road 09Irrigation NetworkA31840 |  | 92.4d | 0d | Contract Price Original Scope [27978.8 SAR]; Pump Operator [20 h]; Equipment Operator [20 h]; Labour [238.87 h]; Buried Valves [104] | 27,978.76 |  | RD9 |
| RSZone 1Road 09Irrigation NetworkA31860 |  | Zone 1 - Road 9 - Lateral Irrigation Network - Buried Valves - Backfilling | 2d | 2026-11-17 | 2026-11-18 | RSZone 1Road 09Irrigation NetworkA31850 |  | 92.4d | 91.76d | Contract Price Original Scope [13989.4 SAR]; Excavator Operator [20 h]; Compactor Operator [20 h]; Dump Truck Operator [20 h]; Water Truck Operator [20 h]; Labour [119.43 h]; Buried Valves [104] | 13,989.38 |  | RD9 |
|  | 2 | **Air Valves** |  | 2026-11-14 | 2026-11-23 |  |  |  |  |  |  |  |  |
| RSZone 1Road 09Irrigation NetworkA31980 |  | Zone 1 - Road 9 - Lateral Irrigation Network - Air Valves - Installation | 3d | 2026-11-14 | 2026-11-17 | RSZone 1Road 09Irrigation NetworkA31620 |  | 89.07d | 0d | Labour; Washout / Air / FlowMeter Valves [3] |  |  | RD9 |
| RSZone 1Road 09Irrigation NetworkA31990 |  | Zone 1 - Road 9 - Lateral Irrigation Network - Air Valves - Surface Box | 3d | 2026-11-17 | 2026-11-21 | RSZone 1Road 09Irrigation NetworkA31980, RSZone 1Road 09Irrigation NetworkA31840 |  | 89.07d | 0d | Labour; Washout / Air / FlowMeter Valves [3] |  |  | RD9 |
| RSZone 1Road 09Irrigation NetworkA32000 |  | Zone 1 - Road 9 - Lateral Irrigation Network - Air Valves - Test | 2d | 2026-11-21 | 2026-11-23 | RSZone 1Road 09Irrigation NetworkA31990 |  | 89.07d | 88.43d | Pump Operator [20 h]; Equipment Operator [20 h]; Labour; Washout / Air / FlowMeter Valves [3] |  |  | RD9 |
|  | 2 | **Valve Champer** |  | 2025-08-10 | 2027-01-16 |  |  |  |  |  |  |  |  |
|  | 1 | **Isolation Champer** |  | 2026-12-17 | 2027-01-13 |  |  |  |  |  |  |  |  |
| RSZone 1Road 09Irrigation NetworkA32070 |  | Zone 1 - Road 9 - Lateral Irrigation Network - Isolation Champer - Excavation | 3d | 2026-12-17 | 2026-12-21 | RSZone 1Road 02Irrigation NetworkA30950 |  | 0.64d | 0d | Labour; Isolation Chambers |  |  | RD9 |
| RSZone 1Road 09Irrigation NetworkA32080 |  | Zone 1 - Road 9 - Lateral Irrigation Network - Isolation Champer - Footings | 2.8d | 2026-12-21 | 2026-12-24 | RSZone 1Road 09Irrigation NetworkA32070 |  | 45.34d | 0d | Labour; Isolation Chambers |  |  | RD9 |
| RSZone 1Road 09Irrigation NetworkA32100 |  | Zone 1 - Road 9 - Lateral Irrigation Network - Isolation Champer - Slab | 3d | 2026-12-24 | 2026-12-28 | RSZone 1Road 09Irrigation NetworkA32080 |  | 45.34d | 0d | Labour; Isolation Chambers |  |  | RD9 |
| RSZone 1Road 09Irrigation NetworkA32090 |  | Zone 1 - Road 9 - Lateral Irrigation Network - Isolation Champer - Walls | 2.84d | 2026-12-28 | 2026-12-31 | RSZone 1Road 09Irrigation NetworkA32100 |  | 45.34d | 0d | Labour; Isolation Chambers |  |  | RD9 |
| RSZone 1Road 09Irrigation NetworkA32110 |  | Zone 1 - Road 9 - Lateral Irrigation Network - Isolation Champer - D.I Cover | 3d | 2026-12-31 | 2027-01-04 | RSZone 1Road 09Irrigation NetworkA32090 |  | 45.34d | 0d | Contract Price Original Scope [16992.9 SAR]; Labour [145.08 h]; Isolation Chambers [4] | 16,992.89 |  | RD9 |
| RSZone 1Road 09Irrigation NetworkA32120 |  | Zone 1 - Road 9 - Lateral Irrigation Network - Isolation Champer - Internal Isolation | 3d | 2027-01-04 | 2027-01-07 | RSZone 1Road 09Irrigation NetworkA32110 |  | 45.34d | 0d | Contract Price Original Scope [8496.44 SAR]; Labour [72.54 h]; Isolation Chambers [4] | 8,496.44 |  | RD9 |
| RSZone 1Road 09Irrigation NetworkA32130 |  | Zone 1 - Road 9 - Lateral Irrigation Network - Isolation Champer - External Isolation | 2.96d | 2027-01-07 | 2027-01-11 | RSZone 1Road 09Irrigation NetworkA32120 |  | 45.34d | 0d | Labour; Isolation Chambers |  |  | RD9 |
| RSZone 1Road 09Irrigation NetworkA32140 |  | Zone 1 - Road 9 - Lateral Irrigation Network - Isolation Champer - Backfilling | 2d | 2027-01-11 | 2027-01-13 | RSZone 1Road 09Irrigation NetworkA32130 |  | 45.34d | 44.7d | Excavator Operator [20 h]; Compactor Operator [20 h]; Dump Truck Operator [20 h]; Water Truck Operator [20 h]; Labour; Isolation Chambers |  |  | RD9 |

| ID | WBS | Activity | Duration | Start | Finish | Predecessors | Complete | Total float | Free float | Resources | Cost | Actual cost | MODON |
| --- | --- | --- | --- | --- | --- | --- | --- | --- | --- | --- | --- | --- | --- |
|  | 2 | **Air Valves Champer** |  | 2025-08-10 | 2026-11-17 |  |  |  |  |  |  |  |  |
| RSZone 1Road 09Irrigation NetworkA32150 |  | Zone 1 - Road 9 - Lateral Irrigation Network - Air Valves Champer - Excavation | 4.9d | 2025-08-10 A | 2025-08-14 A | RSZone 1Road 09Irrigation NetworkA89100 | 100% |  |  | Contract Price Original Scope [1152.77 SAR]; Labour [9.84 h]; Air Valve Chambers [1] | 1,152.77 | 1,152.77 | RD9 |
| RSZone 1Road 09Irrigation NetworkA32160 |  | Zone 1 - Road 9 - Lateral Irrigation Network - Air Valves Champer - Footings | 4.9d | 2025-08-17 A | 2025-08-21 A | RSZone 1Road 09Irrigation NetworkA32150 | 100% |  |  | Contract Price Original Scope [3458.31 SAR]; Labour [29.53 h]; Air Valve Chambers [1] | 3,458.31 | 3,458.31 | RD9 |
| RSZone 1Road 09Irrigation NetworkA32170 |  | Zone 1 - Road 9 - Lateral Irrigation Network - Air Valves Champer - Walls | 7d | 2025-08-24 A | 2025-08-31 A | RSZone 1Road 09Irrigation NetworkA32160 | 100% |  |  | Contract Price Original Scope [4611.08 SAR]; Labour [39.37 h]; Air Valve Chambers [1] | 4,611.08 | 4,611.08 | RD9 |
| RSZone 1Road 09Irrigation NetworkA32200 |  | Zone 1 - Road 9 - Lateral Irrigation Network - Air Valves Champer - Internal Isolation | 2d | 2025-09-01 A | 2025-09-02 A | RSZone 1Road 09Irrigation NetworkA32170 | 100% |  |  | Contract Price Original Scope [1152.77 SAR]; Labour [9.84 h]; Air Valve Chambers [1] | 1,152.77 | 1,152.77 | RD9 |
| RSZone 1Road 09Irrigation NetworkA32210 |  | Zone 1 - Road 9 - Lateral Irrigation Network - Air Valves Champer - External Isolation | 4d | 2025-09-03 A | 2025-09-07 A | RSZone 1Road 09Irrigation NetworkA32200 | 100% |  |  | Contract Price Original Scope [1152.77 SAR]; Labour [9.84 h]; Air Valve Chambers [1] | 1,152.77 | 1,152.77 | RD9 |
| RSZone 1Road 09Irrigation NetworkA32180 |  | Zone 1 - Road 9 - Lateral Irrigation Network - Air Valves Champer - Slab | 3d | 2026-11-09 | 2026-11-11 | RSZone 1Road 09Irrigation NetworkA32210 |  | 93.4d | 0d | Contract Price Original Scope [8069.4 SAR]; Labour [68.89 h]; Air Valve Chambers [1] | 8,069.4 |  | RD9 |
| RSZone 1Road 09Irrigation NetworkA32190 |  | Zone 1 - Road 9 - Lateral Irrigation Network - Air Valves Champer - D.I Cover | 3d | 2026-11-12 | 2026-11-15 | RSZone 1Road 09Irrigation NetworkA32180 |  | 93.4d | 0d | Contract Price Original Scope [2305.54 SAR]; Labour [19.68 h]; Air Valve Chambers [1] | 2,305.54 |  | RD9 |
| RSZone 1Road 09Irrigation NetworkA32220 |  | Zone 1 - Road 9 - Lateral Irrigation Network - Air Valves Champer - Backfilling | 2d | 2026-11-16 | 2026-11-17 | RSZone 1Road 09Irrigation NetworkA32190 |  | 93.4d | 92.76d | Contract Price Original Scope [1152.77 SAR]; Excavator Operator [20 h]; Compactor Operator [20 h]; Dump Truck Operator [20 h]; Water Truck Operator [20 h]; Labour [9.84 h]; Air Valve Chambers [1] | 1,152.77 |  | RD9 |
|  | 3 | **Washout Valves Champer** |  | 2026-12-21 | 2027-01-16 |  |  |  |  |  |  |  |  |
| RSZone 1Road 09Irrigation NetworkA32230 |  | Zone 1 - Road 9 - Lateral Irrigation Network - Washout Valves Champer - Excavation | 2d | 2026-12-21 | 2026-12-23 | RSZone 1Road 09Irrigation NetworkA32070 |  | 0.64d | 0d | Contract Price Original Scope [4989.07 SAR]; Labour [42.59 h]; Washout Chambers [3] | 4,989.07 |  | RD9 |
| RSZone 1Road 09Irrigation NetworkA32240 |  | Zone 1 - Road 9 - Lateral Irrigation Network - Washout Valves Champer - Footings | 3d | 2026-12-23 | 2026-12-27 | RSZone 1Road 09Irrigation NetworkA32230 |  | 42.94d | 0d | Contract Price Original Scope [14967.2 SAR]; Labour [127.78 h]; Washout Chambers [3] | 14,967.2 |  | RD9 |
| RSZone 1Road 09Irrigation NetworkA32260 |  | Zone 1 - Road 9 - Lateral Irrigation Network - Washout Valves Champer - Slab | 3d | 2026-12-27 | 2026-12-30 | RSZone 1Road 09Irrigation NetworkA32240 |  | 42.94d | 0d | Contract Price Original Scope [34923.5 SAR]; Labour [298.16 h]; Washout Chambers [3] | 34,923.47 |  | RD9 |
| RSZone 1Road 09Irrigation NetworkA32250 |  | Zone 1 - Road 9 - Lateral Irrigation Network - Washout Valves Champer - Walls | 3d | 2026-12-30 | 2027-01-03 | RSZone 1Road 09Irrigation NetworkA32260 |  | 42.94d | 0d | Contract Price Original Scope [19956.3 SAR]; Labour [170.38 h]; Washout Chambers [3] | 19,956.27 |  | RD9 |
| RSZone 1Road 09Irrigation NetworkA32270 |  | Zone 1 - Road 9 - Lateral Irrigation Network - Washout Valves Champer - D.I Cover | 3d | 2027-01-03 | 2027-01-06 | RSZone 1Road 09Irrigation NetworkA32250 |  | 42.94d | 0d | Contract Price Original Scope [9978.13 SAR]; Labour [85.19 h]; Washout Chambers [3] | 9,978.13 |  | RD9 |
| RSZone 1Road 09Irrigation NetworkA32280 |  | Zone 1 - Road 9 - Lateral Irrigation Network - Washout Valves Champer - Internal Isolation | 3d | 2027-01-06 | 2027-01-10 | RSZone 1Road 09Irrigation NetworkA32270 |  | 42.94d | 0d | Contract Price Original Scope [4989.07 SAR]; Labour [42.59 h]; Washout Chambers [3] | 4,989.07 |  | RD9 |
| RSZone 1Road 09Irrigation NetworkA32290 |  | Zone 1 - Road 9 - Lateral Irrigation Network - Washout Valves Champer - External Isolation | 3d | 2027-01-10 | 2027-01-13 | RSZone 1Road 09Irrigation NetworkA32280 |  | 42.94d | 0d | Contract Price Original Scope [4989.07 SAR]; Labour [42.59 h]; Washout Chambers [3] | 4,989.07 |  | RD9 |
| RSZone 1Road 09Irrigation NetworkA32300 |  | Zone 1 - Road 9 - Lateral Irrigation Network - Washout Valves Champer - Backfilling | 2d | 2027-01-13 | 2027-01-16 | RSZone 1Road 09Irrigation NetworkA32290 |  | 42.94d | 42.3d | Contract Price Original Scope [4989.07 SAR]; Excavator Operator [20 h]; Compactor Operator [20 h]; Dump Truck Operator [20 h]; Water Truck Operator [20 h]; Labour [42.59 h]; Washout Chambers [3] | 4,989.07 |  | RD9 |
|  | 4 | **FlowMeter Valves Champer** |  | 2025-08-10 | 2026-11-14 |  |  |  |  |  |  |  |  |
| RSZone 1Road 09Irrigation NetworkA32310 |  | Zone 1 - Road 9 - Lateral Irrigation Network - FlowMeter Valves Champer - Excavation | 4.9d | 2025-08-10 A | 2025-08-14 A | RSZone 1Road 09Irrigation NetworkA32210 | 100% |  |  | Contract Price Original Scope [5076.04 SAR]; Labour [43.34 h]; FlowMeter Chambers [3] | 5,076.04 | 5,076.04 | RD9 |
| RSZone 1Road 09Irrigation NetworkA32320 |  | Zone 1 - Road 9 - Lateral Irrigation Network - FlowMeter Valves Champer - Footings | 3d | 2025-08-17 A | 2025-08-19 A | RSZone 1Road 09Irrigation NetworkA32310 | 100% |  |  | Contract Price Original Scope [15228.1 SAR]; Labour [130.01 h]; FlowMeter Chambers [3] | 15,228.11 | 15,228.11 | RD9 |
| RSZone 1Road 09Irrigation NetworkA32330 |  | Zone 1 - Road 9 - Lateral Irrigation Network - FlowMeter Valves Champer - Walls | 6d | 2025-08-20 A | 2025-08-26 A | RSZone 1Road 09Irrigation NetworkA32320 | 100% |  |  | Contract Price Original Scope [20304.1 SAR]; Labour [173.35 h]; FlowMeter Chambers [3] | 20,304.14 | 20,304.14 | RD9 |
| RSZone 1Road 09Irrigation NetworkA32340 |  | Zone 1 - Road 9 - Lateral Irrigation Network - FlowMeter Valves Champer - Slab | 6d | 2025-08-27 A | 2025-09-02 A | RSZone 1Road 09Irrigation NetworkA32330 | 100% |  |  | Contract Price Original Scope [35532.2 SAR]; Labour [303.36 h]; FlowMeter Chambers [3] | 35,532.25 | 35,532.25 | RD9 |
| RSZone 1Road 09Irrigation NetworkA32360 |  | Zone 1 - Road 9 - Lateral Irrigation Network - FlowMeter Valves Champer - Internal Isolation | 4d | 2025-09-03 A | 2025-09-07 A | RSZone 1Road 09Irrigation NetworkA32340 | 100% |  |  | Contract Price Original Scope [5076.04 SAR]; Labour [43.34 h]; FlowMeter Chambers [3] | 5,076.04 | 5,076.04 | RD9 |
| RSZone 1Road 09Irrigation NetworkA32370 |  | Zone 1 - Road 9 - Lateral Irrigation Network - FlowMeter Valves Champer - External Isolation | 3.9d | 2025-09-08 A | 2025-09-11 A | RSZone 1Road 09Irrigation NetworkA32360 | 100% |  |  | Contract Price Original Scope [5076.04 SAR]; Labour [43.34 h]; FlowMeter Chambers [3] | 5,076.04 | 5,076.04 | RD9 |
| RSZone 1Road 09Irrigation NetworkA32350 |  | Zone 1 - Road 9 - Lateral Irrigation Network - FlowMeter Valves Champer - D.I Cover | 3d | 2026-11-09 | 2026-11-11 | RSZone 1Road 09Irrigation NetworkA32370 |  | 96.4d | 0d | Contract Price Original Scope [10152.1 SAR]; Labour [86.67 h]; FlowMeter Chambers [3] | 10,152.07 |  | RD9 |
| RSZone 1Road 09Irrigation NetworkA32380 |  | Zone 1 - Road 9 - Lateral Irrigation Network - FlowMeter Valves Champer - Backfilling | 2d | 2026-11-12 | 2026-11-14 | RSZone 1Road 09Irrigation NetworkA32350 |  | 96.4d | 95.76d | Contract Price Original Scope [5076.04 SAR]; Excavator Operator [20 h]; Compactor Operator [20 h]; Dump Truck Operator [20 h]; Water Truck Operator [20 h]; Labour [43.34 h]; FlowMeter Chambers [3] | 5,076.04 |  | RD9 |

| ID | WBS | Activity | Duration | Start | Finish | Predecessors | Complete | Remaining | Planned start | Planned finish | Total float | Free float | Resources | Cost | Actual cost | MODON |
| --- | --- | --- | --- | --- | --- | --- | --- | --- | --- | --- | --- | --- | --- | --- | --- | --- |
|  | 3 | **Bedding** |  | 2025-08-11 | 2025-08-12 |  |  |  |  |  |  |  |  |  |  |  |
| RSZone 1Road 09Irrigation NetworkA32390 |  | Zone 1 - Road 9 - Lateral Irrigation Network - Bedding - Bedding | 2d | 2025-08-11 A | 2025-08-12 A | RSZone 1Road 09Irrigation NetworkA32370 | 100% |  |  |  |  |  | Contract Price Original Scope [36981.2 SAR]; Compactor Operator [20 h]; Equipment Operator [20 h]; Water Truck Operator [20 h]; Labour [315.73 h]; Bedding [1436] | 36,981.23 | 36,981.23 | RD9 |
|  | 4 | **Thrust Block** |  | 2026-05-19 | 2026-11-09 |  |  |  |  |  |  |  |  |  |  |  |
| RSZone 1Road 09Irrigation NetworkA32400- |  | Zone 1 - Road 9 - Lateral Irrigation Network - Thrust Block - Thrust Block (old) | 142d | 2026-05-19 A | 2026-11-01 A | RSZone 1Road 09Irrigation NetworkA32390 | 100% |  |  |  |  |  | Contract Price Original Scope [28609.3 SAR]; Crane Operator [7.47 h]; Pump Operator [7.47 h]; Equipment Operator [7.47 h]; Labour [244.25 h]; Thrust Blocks [28] | 28,609.28 | 28,609.28 | RD9 |
| RSZone 1Road 09Irrigation NetworkA32400- |  | Zone 1 - Road 9 - Lateral Irrigation Network - Thrust Block - Thrust Block (old) | 1d | 2026-11-09 | 2026-11-09 | RSZone 1Road 09Irrigation NetworkA32400- |  |  |  |  | 100.4d | 99.76d | Contract Price Original Scope [17369.9 SAR]; Crane Operator [4.53 h]; Pump Operator [4.53 h]; Equipment Operator [4.53 h]; Labour [148.3 h]; Thrust Blocks [17] | 17,369.92 |  | RD9 |
|  | 1 | **Main Road** |  | 2026-05-24 | 2026-11-25 |  |  |  |  |  |  |  |  |  |  |  |
| RSZone 1Road 09Main RoadA32680-old |  | Zone 1 - Road 9 - Main Road - Pre-Cast Cerb (old) | 138d | 2026-05-24 A | 2026-11-01 A | RSZone 3Road 04Main RoadA93930-old | 100% |  |  |  |  |  | Contract Price Original Scope [64748.8 SAR]; Compactor Operator [107.05 h]; Equipment Operator [107.05 h]; Water Truck Operator [107.05 h]; Labour [552.79 h]; Main Road - Curbstone [815.99] | 64,748.85 | 64,748.85 | RD9 |
| RSZone 1Road 09Main RoadA32680 |  | Zone 1 - Road 9 - Main Road - Pre-Cast Cerb | 13.75d | 2026-11-10 | 2026-11-25 | RSZone 1Road 09Main RoadA32680-old, RSZone 3Road 04Main RoadA93930 |  |  |  |  | 101.72d | 0d | Contract Price Original Scope [122756 SAR]; Compactor Operator [202.95 h]; Equipment Operator [202.95 h]; Water Truck Operator [202.95 h]; Labour [1048.03 h]; Main Road - Curbstone [1547.01] | 122,756.44 |  | RD9 |
|  | 12 | **Telecom Network** |  | 2025-12-07 | 2026-11-16 |  |  |  |  |  |  |  |  |  |  |  |
|  | 2 | **Telecom Pipe** |  | 2026-07-05 | 2026-11-16 |  |  |  |  |  |  |  |  |  |  |  |
| RSZone 1Road 09Telecom NetworkA58560-old |  | Zone 1 - Road 9 - Telecom Network - Telecom Pipe - Excavation (old) | 102d | 2026-07-05 A | 2026-11-01 A | RSZone 1Road 02Telecom NetworkA85340-old | 100% |  |  |  |  |  | Contract Price Original Scope [33684.8 SAR]; Excavator Operator [10.75 h]; Dump Truck Operator [10.75 h]; Labour [287.58 h]; Telecom Pipe [1563.05] | 33,684.77 | 33,684.77 | RD9 |
| RSZone 1Road 09Telecom NetworkA58570-old |  | Zone 1 - Road 9 - Telecom Network - Telecom Pipe - Concrete Pouring (old) | 101d | 2026-07-06 A | 2026-11-01 A | RSZone 1Road 09Telecom NetworkA58560-old | 100% |  |  |  |  |  | Contract Price Original Scope [235372 SAR]; Crane Operator [4.65 h]; Pump Operator [4.65 h]; Equipment Operator [4.65 h]; Labour [2009.48 h]; Telecom Pipe [1560.25] | 235,371.56 | 235,371.56 | RD9 |
| RSZone 1Road 09Telecom NetworkA58590-old |  | Zone 1 - Road 9 - Telecom Network - Telecom Pipe - Backfilling (old) | 100d | 2026-07-07 A | 2026-11-01 A | RSZone 1Road 09Telecom NetworkA58570-old | 100% |  |  |  |  |  | Contract Price Original Scope [33684.8 SAR]; Excavator Operator [7.17 h]; Compactor Operator [7.17 h]; Dump Truck Operator [7.17 h]; Water Truck Operator [7.17 h]; Labour [287.58 h]; Telecom Pipe [1563.05] | 33,684.77 | 33,684.77 | RD9 |
| RSZone 1Road 09Telecom NetworkA58570 |  | Zone 1 - Road 9 - Telecom Network - Telecom Pipe - Concrete Pouring | 1d | 2026-11-03 A | 2026-11-11 | RSZone 1Road 09Telecom NetworkA58570-old, RSZone 1Road 09Telecom NetworkA58560 FF | 39% | 0.61d | 2026-11-04 | 2026-11-05 | 94.43d | 0d | Contract Price Original Scope [422656 SAR]; Crane Operator [8.35 h]; Pump Operator [8.35 h]; Equipment Operator [8.35 h]; Labour [3608.42 h]; Telecom Pipe [2801.75] | 422,656.45 | 165,540.44 | RD9 |
| RSZone 1Road 09Telecom NetworkA58560 |  | Zone 1 - Road 9 - Telecom Network - Telecom Pipe - Excavation | 1.93d | 2026-11-10 | 2026-11-11 | RSZone 1Road 09Telecom NetworkA58560-old, RSZone 1Road 02Telecom NetworkA85340 |  |  |  |  | 94.43d | 0d | Contract Price Original Scope [60319.2 SAR]; Excavator Operator [19.25 h]; Dump Truck Operator [19.25 h]; Labour [514.97 h]; Telecom Pipe [2798.95] | 60,319.23 |  | RD9 |
| RSZone 1Road 09Telecom NetworkA58590 |  | Zone 1 - Road 9 - Telecom Network - Telecom Pipe - Backfilling | 1.28d | 2026-11-11 | 2026-11-14 | RSZone 1Road 09Telecom NetworkA58590-old, RSZone 1Road 09Telecom NetworkA58570 |  |  |  |  | 94.43d | 0d | Contract Price Original Scope [60319.2 SAR]; Excavator Operator [12.83 h]; Compactor Operator [12.83 h]; Dump Truck Operator [12.83 h]; Water Truck Operator [12.83 h]; Labour [514.97 h]; Telecom Pipe [2798.95] | 60,319.23 |  | RD9 |
| RSZone 1Road 09Telecom NetworkA58580 |  | Zone 1 - Road 9 - Telecom Network - Telecom Pipe - Test | 2d | 2026-11-14 | 2026-11-16 | RSZone 1Road 09Telecom NetworkA58590, RSZone 1Road 02Telecom NetworkA85340, RSZone 1Road 09Telecom NetworkA58570 |  |  |  |  | 100.19d | 99.79d | Contract Price Original Scope [94004 SAR]; Pump Operator [20 h]; Equipment Operator [20 h]; Labour [802.56 h]; Telecom Pipe [4362] | 94,004 |  | RD9 |
|  | 12 | **Telecom Duct** |  | 2025-12-07 | 2026-11-12 |  |  |  |  |  |  |  |  |  |  |  |
| RSZone 1Road 09Telecom NetworkA63400 |  | Zone 1 - Road 9 - Telecom Network - Telecom Duct - Excavation | 3d | 2025-12-07 A | 2025-12-09 A | RSZone 1Road 02Telecom NetworkA85310 | 100% |  |  |  |  |  | Contract Price Original Scope [3156.47 SAR]; Excavator Operator [30 h]; Dump Truck Operator [30 h]; Labour [26.95 h]; Telecom Duct (Road Crossing) [145] | 3,156.47 | 3,156.47 | RD9 |
| RSZone 1Road 09Telecom NetworkA63410 |  | Zone 1 - Road 9 - Telecom Network - Telecom Duct - Concrete Pouring | 5d | 2025-12-10 A | 2025-12-15 A | RSZone 1Road 09Telecom NetworkA63400 | 100% |  |  |  |  |  | Contract Price Original Scope [44190.5 SAR]; Crane Operator [14 h]; Pump Operator [14 h]; Equipment Operator [14 h]; Labour [377.28 h]; Telecom Duct (Road Crossing) [145] | 44,190.51 | 44,190.51 | RD9 |
| RSZone 1Road 09Telecom NetworkA63420 |  | Zone 1 - Road 9 - Telecom Network - Telecom Duct - Test | 2d | 2026-11-09 | 2026-11-10 | RSZone 1Road 09Telecom NetworkA63410 |  |  |  |  | 102.4d | 0d | Contract Price Original Scope [6312.93 SAR]; Pump Operator [20 h]; Equipment Operator [20 h]; Labour [53.9 h]; Telecom Duct (Road Crossing) [145] | 6,312.93 |  | RD9 |
| RSZone 1Road 09Telecom NetworkA63430 |  | Zone 1 - Road 9 - Telecom Network - Telecom Duct - Backfilling | 2d | 2026-11-11 | 2026-11-12 | RSZone 1Road 09Telecom NetworkA63420 |  |  |  |  | 102.4d | 102d | Contract Price Original Scope [9469.4 SAR]; Excavator Operator [20 h]; Compactor Operator [20 h]; Dump Truck Operator [20 h]; Water Truck Operator [20 h]; Labour [80.84 h]; Telecom Duct (Road Crossing) [145] | 9,469.4 |  | RD9 |
|  | 1 | **TELECOM MANHOLE** |  | 2026-07-14 | 2026-11-09 |  |  |  |  |  |  |  |  |  |  |  |
| RSZone 1Road 09Telecom NetworkA67880-old |  | Zone 1 - Road 9 - Telecom Network - TELECOM MANHOLE - Manhole Installation (old) | 94d | 2026-07-14 A | 2026-11-01 A | RSZone 1Road 09Telecom NetworkA63410 | 100% |  |  |  |  |  | Contract Price Original Scope [598822 SAR]; Crane Operator [13.3 h]; Boom Truck Operator [13.3 h]; Equipment Operator [13.3 h]; Labour [5112.43 h]; Telecom Manhole [39.9] | 598,821.99 | 598,821.99 | RD9 |
| RSZone 1Road 09Telecom NetworkA67880 |  | Zone 1 - Road 9 - Telecom Network - TELECOM MANHOLE - Manhole Installation | 1d | 2026-11-09 | 2026-11-09 | RSZone 1Road 09Telecom NetworkA67880-old |  |  |  |  | 76.4d | 0d | Contract Price Original Scope [31517 SAR]; Crane Operator [0.7 h]; Boom Truck Operator [0.7 h]; Equipment Operator [0.7 h]; Labour [269.08 h]; Telecom Manhole [2.1] | 31,516.95 |  | RD9 |

| ID | WBS | Activity | Duration | Start | Finish | Predecessors | Complete | Planned start | Planned finish | Total float | Free float | Resources | Cost | Actual cost | MODON |
| --- | --- | --- | --- | --- | --- | --- | --- | --- | --- | --- | --- | --- | --- | --- | --- |
|  | 2 | **Road 24** |  | 2025-06-19 | 2027-01-07 |  |  |  |  |  |  |  |  |  |  |
|  | 9 | **Storm Network** |  | 2025-09-07 | 2027-01-07 |  |  |  |  |  |  |  |  |  |  |
|  | 1 | **Perforated 160 mm** |  | 2025-10-02 | 2026-11-10 |  |  |  |  |  |  |  |  |  |  |
| RSZone 1Road 24Storm NetworkA48490 |  | Zone 1 - Road 24 - Storm Network - Perforated 160 mm - Excavation | 6d | 2025-10-02 A | 2025-10-08 A | RSZone 1Road 09Storm NetworkA51840 | 100% | 2025-10-02 | 2025-10-09 |  |  | Contract Price Original Scope [49100.3 SAR]; Excavator Operator [30 h]; Dump Truck Operator [30 h]; Labour [419.19 h]; Perforated 160 mm [3072] | 49,100.28 | 49,100.28 | RD24 |
| RSZone 1Road 24Storm NetworkA48500 |  | Zone 1 - Road 24 - Storm Network - Perforated 160 mm - Bedding | 3d | 2025-10-09 A | 2025-10-12 A | RSZone 1Road 24Storm NetworkA48490 | 100% | 2025-10-09 | 2025-10-13 |  |  | Contract Price Original Scope [24550.1 SAR]; Compactor Operator [20 h]; Equipment Operator [20 h]; Water Truck Operator [20 h]; Labour [209.6 h]; Perforated 160 mm [3072] | 24,550.14 | 24,550.14 | RD24 |
| RSZone 1Road 24Storm NetworkA48510 |  | Zone 1 - Road 24 - Storm Network - Perforated 160 mm - Pipe Installation | 3.9d | 2025-10-13 A | 2025-10-16 A | RSZone 1Road 24Storm NetworkA48500 | 100% |  |  |  |  | Contract Price Original Scope [319152 SAR]; Excavator Operator [40 h]; Crane Operator [40 h]; Equipment Operator [40 h]; Labour [2724.75 h]; Perforated 160 mm [3072] | 319,151.81 | 319,151.81 | RD24 |
| RSZone 1Road 24Storm NetworkA48530 |  | Zone 1 - Road 24 - Storm Network - Perforated 160 mm - Backfilling | 3d | 2025-10-19 A | 2025-10-21 A | RSZone 1Road 24Storm NetworkA48510 | 100% |  |  |  |  | Contract Price Original Scope [49100.3 SAR]; Excavator Operator [20 h]; Compactor Operator [20 h]; Dump Truck Operator [20 h]; Water Truck Operator [20 h]; Labour [419.19 h]; Perforated 160 mm [3072] | 49,100.28 | 49,100.28 | RD24 |
| RSZone 1Road 24Storm NetworkA48520 |  | Zone 1 - Road 24 - Storm Network - Perforated 160 mm - Test | 2d | 2026-11-09 | 2026-11-10 | RSZone 1Road 24Storm NetworkA48530 |  |  |  | 123.4d | 109d | Contract Price Original Scope [49100.3 SAR]; Pump Operator [20 h]; Equipment Operator [20 h]; Labour [419.19 h]; Perforated 160 mm [3072] | 49,100.28 |  | RD24 |
|  | 3 | **Collection Pipes 150 MM** |  | 2025-09-07 | 2026-11-12 |  |  |  |  |  |  |  |  |  |  |
| RSZone 1Road 24Storm NetworkA35390 |  | Zone 1 - Road 24 - Storm Network - Collection Pipes 150 MM - Excavation | 4.9d | 2025-09-07 A | 2025-09-11 A | RSZone 1Road 24Storm NetworkA48530 | 100% |  |  |  |  | Contract Price Original Scope [3206.76 SAR]; Excavator Operator [30 h]; Dump Truck Operator [30 h]; Labour [27.38 h]; Collection Pipes 150 MM [671] | 3,206.76 | 3,206.76 | RD24 |
| RSZone 1Road 24Storm NetworkA35400 |  | Zone 1 - Road 24 - Storm Network - Collection Pipes 150 MM - Bedding | 2d | 2025-09-14 A | 2025-09-15 A | RSZone 1Road 24Storm NetworkA35390 | 100% |  |  |  |  | Contract Price Original Scope [1603.38 SAR]; Compactor Operator [20 h]; Equipment Operator [20 h]; Water Truck Operator [20 h]; Labour [13.69 h]; Collection Pipes 150 MM [671] | 1,603.38 | 1,603.38 | RD24 |
| RSZone 1Road 24Storm NetworkA35410 |  | Zone 1 - Road 24 - Storm Network - Collection Pipes 150 MM - Pipe Installation | 6d | 2025-09-15 A | 2025-09-21 A | RSZone 1Road 24Storm NetworkA35400 | 100% |  |  |  |  | Contract Price Original Scope [20843.9 SAR]; Excavator Operator [40 h]; Crane Operator [40 h]; Equipment Operator [40 h]; Labour [177.95 h]; Collection Pipes 150 MM [671] | 20,843.91 | 20,843.91 | RD24 |
| RSZone 1Road 24Storm NetworkA35420 |  | Zone 1 - Road 24 - Storm Network - Collection Pipes 150 MM - Test | 2d | 2026-11-09 | 2026-11-10 | RSZone 1Road 24Storm NetworkA35410 |  |  |  | 121.4d | 0d | Contract Price Original Scope [3206.76 SAR]; Pump Operator [20 h]; Equipment Operator [20 h]; Labour [27.38 h]; Collection Pipes 150 MM [671] | 3,206.76 |  | RD24 |
| RSZone 1Road 24Storm NetworkA35430 |  | Zone 1 - Road 24 - Storm Network - Collection Pipes 150 MM - Backfilling | 2d | 2026-11-11 | 2026-11-12 | RSZone 1Road 24Storm NetworkA35420 |  |  |  | 121.4d | 107d | Contract Price Original Scope [3206.76 SAR]; Excavator Operator [20 h]; Compactor Operator [20 h]; Dump Truck Operator [20 h]; Water Truck Operator [20 h]; Labour [27.38 h]; Collection Pipes 150 MM [671] | 3,206.76 |  | RD24 |
|  | 9 | **Collection Chamber** |  | 2025-11-09 | 2026-11-17 |  |  |  |  |  |  |  |  |  |  |
| RSZone 1Road 24Storm NetworkA45440 |  | Zone 1 - Road 24 - Storm Network - Collection Chamber - Excavation | 4d | 2025-11-09 A | 2025-11-12 A | RSZone 1Road 24Storm NetworkA35410 | 100% |  |  |  |  | Contract Price Original Scope [34878.7 SAR]; Excavator Operator [30 h]; Dump Truck Operator [30 h]; Labour [297.78 h]; Collection Chamber [45] | 34,878.71 | 34,878.71 | RD24 |
| RSZone 1Road 24Storm NetworkA45450 |  | Zone 1 - Road 24 - Storm Network - Collection Chamber - Installation | 4d | 2025-11-13 A | 2025-11-17 A | RSZone 1Road 24Storm NetworkA45440 | 100% | 2025-11-13 | 2025-11-18 |  |  | Contract Price Original Scope [139515 SAR]; Crane Operator [7 h]; Boom Truck Operator [7 h]; Equipment Operator [7 h]; Labour [1191.11 h]; Collection Chamber [45] | 139,514.82 | 139,514.82 | RD24 |
| RSZone 1Road 24Storm NetworkA45480 |  | Zone 1 - Road 24 - Storm Network - Collection Chamber - Backfilling | 5d | 2025-11-20 A | 2025-11-25 A | RSZone 1Road 24Storm NetworkA45450 | 100% | 2025-11-20 | 2025-11-26 |  |  | Contract Price Original Scope [11626.2 SAR]; Excavator Operator [20 h]; Compactor Operator [20 h]; Dump Truck Operator [20 h]; Water Truck Operator [20 h]; Labour [99.26 h]; Collection Chamber [45] | 11,626.24 | 11,626.24 | RD24 |
| RSZone 1Road 24Storm NetworkA45460-old |  | Zone 1 - Road 24 - Storm Network - Collection Chamber - D.I (old) | 129d | 2026-06-03 A | 2026-11-01 A | RSZone 1Road 24Storm NetworkA45480, RSZone 1Road 09Storm NetworkA44230-old | 100% |  |  |  |  | Contract Price Original Scope [3617.05 SAR]; Crane Operator [1.09 h]; Boom Truck Operator [1.09 h]; Equipment Operator [1.09 h]; Labour [30.88 h]; Collection Chamber [7] | 3,617.05 | 3,617.05 | RD24 |
| RSZone 1Road 24Storm NetworkA45460 |  | Zone 1 - Road 24 - Storm Network - Collection Chamber - D.I | 2.53d | 2026-11-11 | 2026-11-15 | RSZone 1Road 24Storm NetworkA45460-old, RSZone 1Road 09Storm NetworkA44230 |  |  |  | 73.96d | 0d | Contract Price Original Scope [19635.4 SAR]; Crane Operator [5.91 h]; Boom Truck Operator [5.91 h]; Equipment Operator [5.91 h]; Labour [167.64 h]; Collection Chamber [38] | 19,635.42 |  | RD24 |
| RSZone 1Road 24Storm NetworkA45470 |  | Zone 1 - Road 24 - Storm Network - Collection Chamber - Inner Isolation | 2d | 2026-11-15 | 2026-11-17 | RSZone 1Road 24Storm NetworkA45460 |  |  |  | 73.96d | 0d | Contract Price Original Scope [23252.5 SAR]; Equipment Operator [20 h]; Labour [198.52 h]; Collection Chamber [45] | 23,252.47 |  | RD24 |
|  | 6 | **Box Culvert** |  | 2026-11-17 | 2026-12-07 |  |  |  |  |  |  |  |  |  |  |
| RSZone 1Road 24Storm NetworkA38690 |  | Zone 1 - Road 24 - Storm Network - Box Culvert - Excavation | 5d | 2026-11-17 | 2026-11-23 | RSZone 1Road 24Storm NetworkA45440, RSZone 1Road 24Storm NetworkA45470 |  |  |  | 73.96d | 0d | Contract Price Original Scope [44389.7 SAR]; Excavator Operator [30 h]; Dump Truck Operator [30 h]; Labour [378.98 h]; Box Culvert (all sizes/depths) [103] | 44,389.7 |  | RD24 |
| RSZone 1Road 24Storm NetworkA38710 |  | Zone 1 - Road 24 - Storm Network - Box Culvert - SLAB INSTALLATIO | 5d | 2026-11-23 | 2026-11-29 | RSZone 1Road 24Storm NetworkA38690 |  |  |  | 73.96d | 0d | Contract Price Original Scope [88779.4 SAR]; Crane Operator [7 h]; Pump Operator [7 h]; Equipment Operator [7 h]; Labour [757.95 h]; Box Culvert (all sizes/depths) [103] | 88,779.39 |  | RD24 |
| RSZone 1Road 24Storm NetworkA38700 |  | Zone 1 - Road 24 - Storm Network - Box Culvert - Installation | 3d | 2026-11-29 | 2026-12-02 | RSZone 1Road 24Storm NetworkA38710 |  |  |  | 73.96d | 0d | Contract Price Original Scope [221948 SAR]; Crane Operator [7 h]; Equipment Operator [7 h]; Labour [1894.88 h]; Box Culvert (all sizes/depths) [103] | 221,948.48 |  | RD24 |
| RSZone 1Road 24Storm NetworkA38720 |  | Zone 1 - Road 24 - Storm Network - Box Culvert - TEST | 2d | 2026-12-02 | 2026-12-05 | RSZone 1Road 24Storm NetworkA38700 |  |  |  | 73.96d | 0d | Contract Price Original Scope [44389.7 SAR]; Pump Operator [20 h]; Equipment Operator [20 h]; Labour [378.98 h]; Box Culvert (all sizes/depths) [103] | 44,389.7 |  | RD24 |
| RSZone 1Road 24Storm NetworkA38730 |  | Zone 1 - Road 24 - Storm Network - Box Culvert - BACKFILLING | 2d | 2026-12-05 | 2026-12-07 | RSZone 1Road 24Storm NetworkA38720 |  |  |  | 73.96d | 0d | Contract Price Original Scope [44389.7 SAR]; Excavator Operator [20 h]; Compactor Operator [20 h]; Dump Truck Operator [20 h]; Water Truck Operator [20 h]; Labour [378.98 h]; Box Culvert (all sizes/depths) [103] | 44,389.7 |  | RD24 |

| ID | WBS | Activity | Duration | Start | Finish | Predecessors | Complete | Remaining | Planned start | Planned finish | Total float | Free float | Resources | Cost | Actual cost | MODON |
| --- | --- | --- | --- | --- | --- | --- | --- | --- | --- | --- | --- | --- | --- | --- | --- | --- |
|  | 11 | **Gravel and Geotextile** |  | 2025-10-20 | 2025-10-22 |  |  |  |  |  |  |  |  |  |  |  |
| RSZone 1Road 24Storm NetworkA51960 |  | Zone 1 - Road 24 - Storm Network - Gravel and Geotextile - Installation | 3d | 2025-10-20 A | 2025-10-22 A | RSZone 1Road 24Storm NetworkA45480 | 100% |  |  |  |  |  | Contract Price Original Scope [360340 SAR]; Excavator Operator [8 h]; Dump Truck Operator [8 h]; Equipment Operator [8 h]; Water Truck Operator [8 h]; Labour [3076.4 h]; Gravel and Geotextile [3072] | 360,340.27 | 360,340.27 | RD24 |
|  | 2 | **Manhole** |  | 2026-12-07 | 2026-12-10 |  |  |  |  |  |  |  |  |  |  |  |
| RSZone 1Road 24Storm NetworkA89130 |  | Zone 1 - Road 24 - Storm Network - Manhole - Cover Installation | 3d | 2026-12-07 | 2026-12-10 | RSZone 1Road 24Storm NetworkA38730 |  |  |  |  | 73.96d | 0d | Contract Price Original Scope [408344 SAR]; Labour [3486.23 h]; Manholes GRP (new + DI cover only) [21] | 408,344.47 |  | RD24 |
|  | 4 | **Concrete Manholes on Box Culvert** |  | 2026-12-10 | 2027-01-07 |  |  |  |  |  |  |  |  |  |  |  |
| RSZone 1Road 24Storm NetworkA94500 |  | Zone 1 - Road 24 - Storm Network - Concrete Manholes on Box Culvert - Excavation | 3d | 2026-12-10 | 2026-12-14 | RSZone 1Road 24Storm NetworkA89130 |  |  |  |  | 73.96d | 0d | Contract Price Original Scope [7091.5 SAR]; Labour [60.54 h]; Concrete Manholes on Box Culvert - Manhole with a depth of 1.5-2.0 m [13] | 7,091.5 |  | RD24 |
| RSZone 1Road 24Storm NetworkA94530 |  | Zone 1 - Road 24 - Storm Network - Concrete Manholes on Box Culvert - Slab | 5d | 2026-12-14 | 2026-12-20 | RSZone 1Road 24Storm NetworkA94500 |  |  |  |  | 73.96d | 0d | Contract Price Original Scope [49640.5 SAR]; Labour [423.8 h]; Concrete Manholes on Box Culvert - Manhole with a depth of 1.5-2.0 m [13] | 49,640.48 |  | RD24 |
| RSZone 1Road 24Storm NetworkA94520 |  | Zone 1 - Road 24 - Storm Network - Concrete Manholes on Box Culvert - Walls | 5d | 2026-12-20 | 2026-12-26 | RSZone 1Road 24Storm NetworkA94530 |  |  |  |  | 73.96d | 0d | Contract Price Original Scope [28366 SAR]; Labour [242.17 h]; Concrete Manholes on Box Culvert - Manhole with a depth of 1.5-2.0 m [13] | 28,365.99 |  | RD24 |
| RSZone 1Road 24Storm NetworkA94550 |  | Zone 1 - Road 24 - Storm Network - Concrete Manholes on Box Culvert - Internal Isolation | 3d | 2026-12-26 | 2026-12-29 | RSZone 1Road 24Storm NetworkA94520 |  |  |  |  | 73.96d | 0d | Contract Price Original Scope [7091.5 SAR]; Labour [60.54 h]; Concrete Manholes on Box Culvert - Manhole with a depth of 1.5-2.0 m [13] | 7,091.5 |  | RD24 |
| RSZone 1Road 24Storm NetworkA94540 |  | Zone 1 - Road 24 - Storm Network - Concrete Manholes on Box Culvert - D.I Cover | 3d | 2026-12-29 | 2027-01-02 | RSZone 1Road 24Storm NetworkA94550 |  |  |  |  | 73.96d | 0d | Contract Price Original Scope [14183 SAR]; Labour [121.09 h]; Concrete Manholes on Box Culvert - Manhole with a depth of 1.5-2.0 m [49] | 14,182.99 |  | RD24 |
| RSZone 1Road 24Storm NetworkA94560 |  | Zone 1 - Road 24 - Storm Network - Concrete Manholes on Box Culvert - External Isolation | 3d | 2027-01-02 | 2027-01-05 | RSZone 1Road 24Storm NetworkA94540 |  |  |  |  | 73.96d | 0d | Contract Price Original Scope [7091.5 SAR]; Labour [60.54 h]; Concrete Manholes on Box Culvert - Manhole with a depth of 1.5-2.0 m [13] | 7,091.5 |  | RD24 |
| RSZone 1Road 24Storm NetworkA94570 |  | Zone 1 - Road 24 - Storm Network - Concrete Manholes on Box Culvert - Backfilling | 2d | 2027-01-05 | 2027-01-07 | RSZone 1Road 24Storm NetworkA94560 |  |  |  |  | 73.96d | 59.56d | Contract Price Original Scope [7091.5 SAR]; Excavator Operator [20 h]; Compactor Operator [20 h]; Dump Truck Operator [20 h]; Water Truck Operator [20 h]; Labour [60.54 h]; Concrete Manholes on Box Culvert - Manhole with a depth of 1.5-2.0 m [13] | 7,091.5 |  | RD24 |
|  | 1 | **Sewage Network** |  | 2025-08-24 | 2026-11-17 |  |  |  |  |  |  |  |  |  |  |  |
|  | 6 | **GRP Pipes** |  | 2025-08-24 | 2026-11-12 |  |  |  |  |  |  |  |  |  |  |  |
|  | 1 | **GRP Pipes 500 MM** |  | 2025-08-24 | 2026-11-12 |  |  |  |  |  |  |  |  |  |  |  |
| RSZone 1Road 24Sewage NetworkA33650 |  | Zone 1 - Road 24 - Sewage Network - GRP Pipes 500 MM - Excavation | 3d | 2025-08-24 A | 2025-08-26 A | RSZone 1Road 09Sewage NetworkA34740 | 100% |  |  |  |  |  | Contract Price Original Scope [7033.35 SAR]; Excavator Operator [30 h]; Dump Truck Operator [30 h]; Labour [60.05 h]; GRP Pipes 500 MM [50] | 7,033.35 | 7,033.35 | RD24 |
| RSZone 1Road 24Sewage NetworkA33660 |  | Zone 1 - Road 24 - Sewage Network - GRP Pipes 500 MM - Pipe Installation | 5d | 2025-08-27 A | 2025-09-01 A | RSZone 1Road 24Sewage NetworkA33650 | 100% |  |  |  |  |  | Contract Price Original Scope [30477.8 SAR]; Excavator Operator [40 h]; Crane Operator [40 h]; Equipment Operator [40 h]; Labour [260.2 h]; GRP Pipes 500 MM [50] | 30,477.85 | 30,477.85 | RD24 |
| RSZone 1Road 24Sewage NetworkA33670 |  | Zone 1 - Road 24 - Sewage Network - GRP Pipes 500 MM - Test | 2d | 2026-11-09 | 2026-11-10 | RSZone 1Road 24Sewage NetworkA33660 |  |  |  |  | 101.4d | 0d | Contract Price Original Scope [4688.9 SAR]; Pump Operator [20 h]; Equipment Operator [20 h]; Labour [40.03 h]; GRP Pipes 500 MM [50] | 4,688.9 |  | RD24 |
| RSZone 1Road 24Sewage NetworkA33680 |  | Zone 1 - Road 24 - Sewage Network - GRP Pipes 500 MM - Backfilling | 2d | 2026-11-11 | 2026-11-12 | RSZone 1Road 24Sewage NetworkA33670 |  |  |  |  | 101.4d | 100.8d | Contract Price Original Scope [4688.9 SAR]; Excavator Operator [20 h]; Compactor Operator [20 h]; Dump Truck Operator [20 h]; Water Truck Operator [20 h]; Labour [40.03 h]; GRP Pipes 500 MM [50] | 4,688.9 |  | RD24 |
|  | 10 | **Manhole** |  | 2026-05-20 | 2026-11-17 |  |  |  |  |  |  |  |  |  |  |  |
| RSZone 1Road 24Sewage NetworkA33750-old |  | Zone 1 - Road 24 - Sewage Network - Manhole - Excavation (old) | 141d | 2026-05-20 A | 2026-11-01 A | RSZone 1Road 24Sewage NetworkA33650 | 100% |  |  |  |  |  | Contract Price Original Scope [22803.4 SAR]; Excavator Operator [24 h]; Dump Truck Operator [24 h]; Labour [194.68 h]; Manholes (all depths, GRP) [12] | 22,803.39 | 22,803.39 | RD24 |
| RSZone 1Road 24Sewage NetworkA33760-old |  | Zone 1 - Road 24 - Sewage Network - Manhole - FOOTING (old) | 140d | 2026-05-21 A | 2026-11-01 A | RSZone 1Road 24Sewage NetworkA33750-old | 100% |  | 2026-05-21 | 2026-11-02 |  |  | Contract Price Original Scope [114017 SAR]; Labour [973.42 h]; Manholes (all depths, GRP) [10] | 114,016.96 | 114,016.96 | RD24 |
| RSZone 1Road 24Sewage NetworkA33770-old |  | Zone 1 - Road 24 - Sewage Network - Manhole - MH INSTALLATION (old) | 137d | 2026-05-25 A | 2026-11-01 A | RSZone 1Road 24Sewage NetworkA33760-old | 100% |  |  |  |  |  | Contract Price Original Scope [133020 SAR]; Labour [1135.65 h]; Manholes (all depths, GRP) [10] | 133,019.79 | 133,019.79 | RD24 |
| RSZone 1Road 24Sewage NetworkA33750 |  | Zone 1 - Road 24 - Sewage Network - Manhole - Excavation | 1d | 2026-11-03 A | 2026-11-09 | RSZone 1Road 24Sewage NetworkA33750-old | 93% | 0.07d | 2026-11-02 | 2026-11-02 | 98.2d | 0d | Contract Price Original Scope [5700.85 SAR]; Excavator Operator [6 h]; Dump Truck Operator [6 h]; Labour [48.67 h]; Manholes (all depths, GRP) [3] | 5,700.85 | 5,320.79 | RD24 |
| RSZone 1Road 24Sewage NetworkA33760 |  | Zone 1 - Road 24 - Sewage Network - Manhole - FOOTING | 1d | 2026-11-03 A | 2026-11-09 | RSZone 1Road 24Sewage NetworkA33760-old, RSZone 1Road 24Sewage NetworkA33750 SS | 80% | 0.2d | 2026-11-03 | 2026-11-03 | 98.2d | 0d | Contract Price Original Scope [57008.5 SAR]; Labour [486.71 h]; Manholes (all depths, GRP) [5] | 57,008.48 | 45,606.79 | RD24 |
| RSZone 1Road 24Sewage NetworkA33770 |  | Zone 1 - Road 24 - Sewage Network - Manhole - MH INSTALLATION | 1d | 2026-11-03 A | 2026-11-09 | RSZone 1Road 24Sewage NetworkA33770-old, RSZone 1Road 24Sewage NetworkA33760 SS | 80% | 0.2d | 2026-11-04 | 2026-11-04 | 98.2d | 0d | Contract Price Original Scope [66509.9 SAR]; Labour [567.83 h]; Manholes (all depths, GRP) [5] | 66,509.9 | 53,207.92 | RD24 |
| RSZone 1Road 24Sewage NetworkA33780 |  | Zone 1 - Road 24 - Sewage Network - Manhole - COVER INSTALLATION | 3d | 2026-11-09 | 2026-11-12 | RSZone 1Road 24Sewage NetworkA33770, RSZone 1Road 24Sewage NetworkA33750, RSZone 1Road 24Sewage NetworkA33760 |  |  |  |  | 98.2d | 0d | Contract Price Original Scope [178627 SAR]; Labour [1525.02 h]; Manholes (all depths, GRP) [47] | 178,626.58 |  | RD24 |
| RSZone 1Road 24Sewage NetworkA33790 |  | Zone 1 - Road 24 - Sewage Network - Manhole - TEST | 2d | 2026-11-12 | 2026-11-15 | RSZone 1Road 24Sewage NetworkA33780 |  |  |  |  | 98.2d | 0d | Contract Price Original Scope [57008.5 SAR]; Pump Operator [20 h]; Equipment Operator [20 h]; Labour [486.71 h]; Manholes (all depths, GRP) [15] | 57,008.48 |  | RD24 |
| RSZone 1Road 24Sewage NetworkA33800 |  | Zone 1 - Road 24 - Sewage Network - Manhole - BACKFILLING | 2d | 2026-11-15 | 2026-11-17 | RSZone 1Road 24Sewage NetworkA33790 |  |  |  |  | 98.2d | 97.6d | Contract Price Original Scope [57008.5 SAR]; Excavator Operator [20 h]; Compactor Operator [20 h]; Dump Truck Operator [20 h]; Water Truck Operator [20 h]; Labour [486.71 h]; Manholes (all depths, GRP) [15] | 57,008.48 |  | RD24 |

| ID | WBS | Activity | Duration | Start | Finish | Predecessors | Complete | Remaining | Planned start | Planned finish | Total float | Free float | Resources | Cost | Actual cost | MODON |
| --- | --- | --- | --- | --- | --- | --- | --- | --- | --- | --- | --- | --- | --- | --- | --- | --- |
|  | 5 | **Potable Water Network-1** |  | 2026-06-22 | 2026-12-09 |  |  |  |  |  |  |  |  |  |  |  |
|  | 7 | **FIRE HYDRANT** |  | 2026-07-05 | 2026-11-17 |  |  |  |  |  |  |  |  |  |  |  |
| RSZone 1Road 24Potable NetworkA57540-old |  | Zone 1 - Road 24 - Potable Water Network-1 - FIRE HYDRANT - Excavation (old) | 102d | 2026-07-05 A | 2026-11-01 A | RSZone 1Road 09Potable NetworkA57100 | 100% |  |  |  |  |  | Contract Price Original Scope [40234.3 SAR]; Excavator Operator [28.07 h]; Dump Truck Operator [28.07 h]; Labour [343.5 h]; Fire Hydrant [29] | 40,234.26 | 40,234.26 | RD24 |
| RSZone 1Road 24Potable NetworkA57550-old |  | Zone 1 - Road 24 - Potable Water Network-1 - FIRE HYDRANT - Buried Gate Valve Installation (old) | 101d | 2026-07-06 A | 2026-11-01 A | RSZone 1Road 24Potable NetworkA57540-old | 100% |  |  |  |  |  | Labour; Fire Hydrant [29] |  |  | RD24 |
| RSZone 1Road 24Potable NetworkA57560-old |  | Zone 1 - Road 24 - Potable Water Network-1 - FIRE HYDRANT - Fire Hydrant Installation (old) | 99d | 2026-07-08 A | 2026-11-01 A | RSZone 1Road 24Potable NetworkA57550-old | 100% |  |  |  |  |  | Contract Price Original Scope [293710 SAR]; Labour [2507.54 h]; Fire Hydrant [29] | 293,710.1 | 293,710.1 | RD24 |
| RSZone 1Road 24Potable NetworkA57540 |  | Zone 1 - Road 24 - Potable Water Network-1 - FIRE HYDRANT - Excavation | 1d | 2026-11-03 A | 2026-11-09 | RSZone 1Road 24Potable NetworkA57540-old | 97% | 0.03d | 2026-11-02 | 2026-11-02 | 94.37d | 0d | Contract Price Original Scope [2771.48 SAR]; Excavator Operator [1.93 h]; Dump Truck Operator [1.93 h]; Labour [23.66 h]; Fire Hydrant [2] | 2,771.48 | 2,683.72 | RD24 |
| RSZone 1Road 24Potable NetworkA57550 |  | Zone 1 - Road 24 - Potable Water Network-1 - FIRE HYDRANT - Buried Gate Valve Installation | 1d | 2026-11-03 A | 2026-11-09 | RSZone 1Road 24Potable NetworkA57550-old, RSZone 1Road 24Potable NetworkA57540 SS | 97% | 0.03d | 2026-11-03 | 2026-11-03 | 94.37d | 0d | Labour; Fire Hydrant [2] |  |  | RD24 |
| RSZone 1Road 24Potable NetworkA57560 |  | Zone 1 - Road 24 - Potable Water Network-1 - FIRE HYDRANT - Fire Hydrant Installation | 1d | 2026-11-03 A | 2026-11-09 | RSZone 1Road 24Potable NetworkA57560-old, RSZone 1Road 24Potable NetworkA57550 SS | 97% | 0.03d | 2026-11-04 | 2026-11-04 | 94.37d | 0d | Contract Price Original Scope [20231.8 SAR]; Labour [172.73 h]; Fire Hydrant [2] | 20,231.81 | 19,591.14 | RD24 |
| RSZone 1Road 24Potable NetworkA57570 |  | Zone 1 - Road 24 - Potable Water Network-1 - FIRE HYDRANT - Surface Box | 3d | 2026-11-09 | 2026-11-12 | RSZone 1Road 24Potable NetworkA57560, RSZone 1Road 24Potable NetworkA57540, RSZone 1Road 24Potable NetworkA57550 |  |  |  |  | 94.37d | 0d | Labour; Fire Hydrant [31] |  |  | RD24 |
| RSZone 1Road 24Potable NetworkA57580 |  | Zone 1 - Road 24 - Potable Water Network-1 - FIRE HYDRANT - Test | 2d | 2026-11-12 | 2026-11-15 | RSZone 1Road 24Potable NetworkA57570 |  |  |  |  | 94.37d | 0d | Contract Price Original Scope [30104 SAR]; Pump Operator [20 h]; Equipment Operator [20 h]; Labour [257.01 h]; Fire Hydrant [31] | 30,104.02 |  | RD24 |
| RSZone 1Road 24Potable NetworkA57590 |  | Zone 1 - Road 24 - Potable Water Network-1 - FIRE HYDRANT - Backfilling | 2d | 2026-11-15 | 2026-11-17 | RSZone 1Road 24Potable NetworkA57580 |  |  |  |  | 94.37d | 94.17d | Contract Price Original Scope [43005.7 SAR]; Excavator Operator [20 h]; Compactor Operator [20 h]; Dump Truck Operator [20 h]; Water Truck Operator [20 h]; Labour [367.16 h]; Fire Hydrant [31] | 43,005.74 |  | RD24 |
|  | 2 | **Flow Meter Valves** |  | 2026-07-16 | 2026-11-29 |  |  |  |  |  |  |  |  |  |  |  |
| RSZone 1Road 24Potable NetworkA89140 |  | Zone 1 - Road 24 - Potable Water Network-1 - Flow Meter Valves - Excavation | 4d | 2026-07-16 A | 2026-07-20 A | RSZone 1Road 09Potable NetworkA57120 | 100% |  | 2026-07-16 | 2026-07-21 |  |  | Contract Price Original Scope [3759.56 SAR]; Labour [32.1 h]; Flow Meter Chambers [1] | 3,759.56 | 3,759.56 | RD24 |
| RSZone 1Road 24Potable NetworkA89150 |  | Zone 1 - Road 24 - Potable Water Network-1 - Flow Meter Valves - Footings | 2.9d | 2026-07-21 A | 2026-07-23 A | RSZone 1Road 24Potable NetworkA89140 | 100% |  |  |  |  |  | Contract Price Original Scope [11278.7 SAR]; Labour [96.29 h]; Flow Meter Chambers [1] | 11,278.69 | 11,278.69 | RD24 |
| RSZone 1Road 24Potable NetworkA89160 |  | Zone 1 - Road 24 - Potable Water Network-1 - Flow Meter Valves - Walls | 7d | 2026-07-26 A | 2026-08-02 A | RSZone 1Road 24Potable NetworkA89150 | 100% |  |  |  |  |  | Contract Price Original Scope [15038.2 SAR]; Labour [128.39 h]; Flow Meter Chambers [1] | 15,038.25 | 15,038.25 | RD24 |
| RSZone 1Road 24Potable NetworkA89170 |  | Zone 1 - Road 24 - Potable Water Network-1 - Flow Meter Valves - Slab | 3d | 2026-11-09 | 2026-11-11 | RSZone 1Road 24Potable NetworkA89160 |  |  |  |  | 83.4d | 0d | Contract Price Original Scope [26316.9 SAR]; Labour [224.68 h]; Flow Meter Chambers [1] | 26,316.93 |  | RD24 |
| RSZone 1Road 24Potable NetworkA89220 |  | Zone 1 - Road 24 - Potable Water Network-1 - Flow Meter Valves - Valve Installation | 4d | 2026-11-12 | 2026-11-16 | RSZone 1Road 24Potable NetworkA89170 |  |  |  |  | 83.4d | 0d | Contract Price Original Scope [6969 SAR]; Labour [59.5 h]; Flow Meter Chambers [1] | 6,969 |  | RD24 |
| RSZone 1Road 24Potable NetworkA89190 |  | Zone 1 - Road 24 - Potable Water Network-1 - Flow Meter Valves - Internal Isolation | 3d | 2026-11-17 | 2026-11-19 | RSZone 1Road 24Potable NetworkA89220 |  |  |  |  | 83.4d | 0d | Contract Price Original Scope [3759.56 SAR]; Labour [32.1 h]; Flow Meter Chambers [1] | 3,759.56 |  | RD24 |
| RSZone 1Road 24Potable NetworkA89180 |  | Zone 1 - Road 24 - Potable Water Network-1 - Flow Meter Valves - D.I Cover | 3d | 2026-11-21 | 2026-11-23 | RSZone 1Road 24Potable NetworkA89190 |  |  |  |  | 83.4d | 0d | Contract Price Original Scope [7519.12 SAR]; Labour [64.19 h]; Flow Meter Chambers [1] | 7,519.12 |  | RD24 |
| RSZone 1Road 24Potable NetworkA89200 |  | Zone 1 - Road 24 - Potable Water Network-1 - Flow Meter Valves - External Isolation | 3d | 2026-11-24 | 2026-11-26 | RSZone 1Road 24Potable NetworkA89180 |  |  |  |  | 83.4d | 0d | Contract Price Original Scope [3759.56 SAR]; Labour [32.1 h]; Flow Meter Chambers [1] | 3,759.56 |  | RD24 |
| RSZone 1Road 24Potable NetworkA89210 |  | Zone 1 - Road 24 - Potable Water Network-1 - Flow Meter Valves - Backfilling | 2d | 2026-11-28 | 2026-11-29 | RSZone 1Road 24Potable NetworkA89200 |  |  |  |  | 83.4d | 83.2d | Contract Price Original Scope [3759.56 SAR]; Excavator Operator [20 h]; Compactor Operator [20 h]; Dump Truck Operator [20 h]; Water Truck Operator [20 h]; Labour [32.1 h]; Flow Meter Chambers [1] | 3,759.56 |  | RD24 |
|  | 1 | **Washout Valves** |  | 2026-11-30 | 2026-12-09 |  |  |  |  |  |  |  |  |  |  |  |
| RSZone 1Road 24Potable NetworkA56580 |  | Zone 1 - Road 24 - Potable Water Network-1 - Washout Valves - Installation | 3.1d | 2026-11-30 | 2026-12-03 | RSZone 1Road 09Potable NetworkA56530 |  |  |  |  | 0.2d | 0d | Labour; Washout / Air / other Valves [1] |  |  | RD24 |
| RSZone 1Road 24Potable NetworkA56590 |  | Zone 1 - Road 24 - Potable Water Network-1 - Washout Valves - Surface Box | 3d | 2026-12-03 | 2026-12-07 | RSZone 1Road 24Potable NetworkA56580 |  |  |  |  | 75.2d | 0d | Labour; Washout / Air / other Valves [1] |  |  | RD24 |
| RSZone 1Road 24Potable NetworkA56600 |  | Zone 1 - Road 24 - Potable Water Network-1 - Washout Valves - Test | 2d | 2026-12-07 | 2026-12-09 | RSZone 1Road 24Potable NetworkA56590 |  |  |  |  | 75.2d | 75d | Pump Operator [20 h]; Equipment Operator [20 h]; Labour; Washout / Air / other Valves [1] |  |  | RD24 |

| ID | WBS | Activity | Duration | Start | Finish | Predecessors | Complete | Planned start | Planned finish | Total float | Free float | Resources | Cost | Actual cost | MODON |
| --- | --- | --- | --- | --- | --- | --- | --- | --- | --- | --- | --- | --- | --- | --- | --- |
|  | 3 | **Buried Valves** |  | 2026-06-22 | 2026-11-18 |  |  |  |  |  |  |  |  |  |  |
| RSZone 1Road 24Potable NetworkA55920-old |  | Zone 1 - Road 24 - Potable Water Network-1 - Buried Valves - Excavation (old) | 113d | 2026-06-22 A | 2026-11-01 A | RSZone 1Road 24Potable NetworkA89140 | 100% |  |  |  |  | Contract Price Original Scope [9130.82 SAR]; Excavator Operator [23.75 h]; Dump Truck Operator [23.75 h]; Labour [77.95 h]; Buried Valves [57] | 9,130.82 | 9,130.82 | RD24 |
| RSZone 1Road 24Potable NetworkA55930-old |  | Zone 1 - Road 24 - Potable Water Network-1 - Buried Valves - Installation (old) | 112d | 2026-06-23 A | 2026-11-01 A | RSZone 1Road 24Potable NetworkA55920-old | 100% |  |  |  |  | Contract Price Original Scope [118701 SAR]; Labour [1013.4 h]; Buried Valves [57] | 118,700.62 | 118,700.62 | RD24 |
| RSZone 1Road 24Potable NetworkA55950-old |  | Zone 1 - Road 24 - Potable Water Network-1 - Buried Valves - Test (old) | 110d | 2026-06-25 A | 2026-11-01 A | RSZone 1Road 24Potable NetworkA55930-old | 100% | 2026-06-25 | 2026-11-02 |  |  | Contract Price Original Scope [16646.9 SAR]; Pump Operator [7.22 h]; Equipment Operator [7.22 h]; Labour [142.12 h]; Buried Valves [25.98] | 16,646.92 | 16,646.92 | RD24 |
| RSZone 1Road 24Potable NetworkA55920 |  | Zone 1 - Road 24 - Potable Water Network-1 - Buried Valves - Excavation | 1d | 2026-11-09 | 2026-11-09 | RSZone 1Road 24Potable NetworkA55920-old |  |  |  | 92.92d | 0d | Contract Price Original Scope [2402.85 SAR]; Excavator Operator [6.25 h]; Dump Truck Operator [6.25 h]; Labour [20.51 h]; Buried Valves [15] | 2,402.85 |  | RD24 |
| RSZone 1Road 24Potable NetworkA55930 |  | Zone 1 - Road 24 - Potable Water Network-1 - Buried Valves - Installation | 1d | 2026-11-10 | 2026-11-10 | RSZone 1Road 24Potable NetworkA55930-old, RSZone 1Road 24Potable NetworkA55920 |  |  |  | 92.92d | 0d | Contract Price Original Scope [31237 SAR]; Labour [266.69 h]; Buried Valves [15] | 31,237.01 |  | RD24 |
| RSZone 1Road 24Potable NetworkA55950 |  | Zone 1 - Road 24 - Potable Water Network-1 - Buried Valves - Test | 1.28d | 2026-11-11 | 2026-11-12 | RSZone 1Road 24Potable NetworkA55950-old, RSZone 1Road 24Potable NetworkA55930 |  |  |  | 92.92d | 0d | Contract Price Original Scope [29487.7 SAR]; Pump Operator [12.78 h]; Equipment Operator [12.78 h]; Labour [251.75 h]; Buried Valves [46.02] | 29,487.73 |  | RD24 |
| RSZone 1Road 24Potable NetworkA55940 |  | Zone 1 - Road 24 - Potable Water Network-1 - Buried Valves - Surface Box | 3.2d | 2026-11-12 | 2026-11-16 | RSZone 1Road 24Potable NetworkA55950, RSZone 1Road 24Potable NetworkA55920, RSZone 1Road 24Potable NetworkA55930 |  |  |  | 92.92d | 0d | Labour; Buried Valves [72] |  |  | RD24 |
| RSZone 1Road 24Potable NetworkA55960 |  | Zone 1 - Road 24 - Potable Water Network-1 - Buried Valves - Backfilling | 2d | 2026-11-16 | 2026-11-18 | RSZone 1Road 24Potable NetworkA55940 |  |  |  | 92.92d | 92.72d | Contract Price Original Scope [23067.3 SAR]; Excavator Operator [20 h]; Compactor Operator [20 h]; Dump Truck Operator [20 h]; Water Truck Operator [20 h]; Labour [196.94 h]; Buried Valves [72] | 23,067.33 |  | RD24 |
|  | 4 | **Fittings** |  | 2026-10-05 | 2026-11-15 |  |  |  |  |  |  |  |  |  |  |
|  | 5 | **Tees 200 MM** |  | 2026-10-05 | 2026-11-15 |  |  |  |  |  |  |  |  |  |  |
| RSZone 1Road 24Potable NetworkA89240-old |  | Zone 1 - Road 24 - Potable Water Network-1 - Tees 200 MM - Installation (old) | 24d | 2026-10-05 A | 2026-11-01 A | RSZone 1Road 24Potable NetworkA55950-old | 100% |  |  |  |  | Contract Price Original Scope [2999.6 SAR]; Labour [25.61 h]; Fittings - Tees (all sizes) [1] | 2,999.6 | 2,999.6 | RD24 |
| RSZone 1Road 24Potable NetworkA89240 |  | Zone 1 - Road 24 - Potable Water Network-1 - Tees 200 MM - Installation | 2.25d | 2026-11-12 | 2026-11-15 | RSZone 1Road 24Potable NetworkA89240-old, RSZone 1Road 24Potable NetworkA55950 |  |  |  | 94.67d | 0d | Contract Price Original Scope [8998.81 SAR]; Labour [76.83 h]; Fittings - Tees (all sizes) [3] | 8,998.81 |  | RD24 |
|  | 5 | **Thrust Blocks** |  | 2026-11-15 | 2026-11-16 |  |  |  |  |  |  |  |  |  |  |
| RSZone 1Road 24Potable NetworkA89250 |  | Zone 1 - Road 24 - Potable Water Network-1 - Thrust Blocks - Thrust Block | 1.2d | 2026-11-15 | 2026-11-16 | RSZone 1Road 24Potable NetworkA89240 |  |  |  | 94.67d | 94.47d | Contract Price Original Scope [23613.4 SAR]; Crane Operator [12 h]; Pump Operator [12 h]; Equipment Operator [12 h]; Labour [201.6 h]; Thrust Blocks [7] | 23,613.39 |  | RD24 |
|  | 6 | **Lateral Irrigation Network** |  | 2026-08-30 | 2026-11-21 |  |  |  |  |  |  |  |  |  |  |
|  | 1 | **HDPE Fitting** |  | 2026-10-07 | 2026-11-15 |  |  |  |  |  |  |  |  |  |  |
|  | 2 | **Tees** |  | 2026-10-07 | 2026-11-11 |  |  |  |  |  |  |  |  |  |  |
| RSZone 1Road 24Irrigation NetworkA89260- |  | Zone 1 - Road 24 - Lateral Irrigation Network - Tees - Installation (old) | 22d | 2026-10-07 A | 2026-11-01 A | RSZone 1Road 09Irrigation NetworkA32390 | 100% |  |  |  |  | Contract Price Original Scope [1536.06 SAR]; Labour [13.11 h]; Fittings - Tees (all sizes) [1] | 1,536.06 | 1,536.06 | RD24 |
| RSZone 1Road 24Irrigation NetworkA89260- |  | Zone 1 - Road 24 - Lateral Irrigation Network - Tees - Installation (old) | 2.25d | 2026-11-09 | 2026-11-11 | RSZone 1Road 24Irrigation NetworkA89260- |  |  |  | 96.15d | 0d | Contract Price Original Scope [4608.18 SAR]; Labour [39.34 h]; Fittings - Tees (all sizes) [3] | 4,608.18 |  | RD24 |
|  | 3 | **End Cap** |  | 2026-11-11 | 2026-11-15 |  |  |  |  |  |  |  |  |  |  |
| RSZone 1Road 24Irrigation NetworkA89270 |  | Zone 1 - Road 24 - Lateral Irrigation Network - End Cap - Installation | 3d | 2026-11-11 | 2026-11-15 | RSZone 1Road 24Irrigation NetworkA89260- |  |  |  | 96.15d | 95.51d | Contract Price Original Scope [2988.72 SAR]; Labour [25.52 h]; Fittings - End Caps (all sizes) [8] | 2,988.72 |  | RD24 |
|  | 11 | **Valves** |  | 2026-08-30 | 2026-11-21 |  |  |  |  |  |  |  |  |  |  |
|  | 1 | **Buried Valves** |  | 2026-08-30 | 2026-11-16 |  |  |  |  |  |  |  |  |  |  |
| RSZone 1Road 24Irrigation NetworkA94580 |  | Zone 1 - Road 24 - Lateral Irrigation Network - Buried Valves - Excavation | 3d | 2026-08-30 A | 2026-09-01 A | RSZone 1Road 09Irrigation NetworkA32390 | 100% |  |  |  |  | Contract Price Original Scope [2219.47 SAR]; Excavator Operator [30 h]; Dump Truck Operator [30 h]; Labour [18.95 h]; Buried Valves [33] | 2,219.47 | 2,219.47 | RD24 |
| RSZone 1Road 24Irrigation NetworkA94590 |  | Zone 1 - Road 24 - Lateral Irrigation Network - Buried Valves - Installation | 4d | 2026-09-02 A | 2026-09-06 A | RSZone 1Road 24Irrigation NetworkA94580, RSZone 1Road 24Irrigation NetworkA94580 FF | 100% |  |  |  |  | Contract Price Original Scope [28853.1 SAR]; Labour [246.33 h]; Buried Valves [33] | 28,853.09 | 28,853.09 | RD24 |
| RSZone 1Road 24Irrigation NetworkA94600 |  | Zone 1 - Road 24 - Lateral Irrigation Network - Buried Valves - Surface Box | 3d | 2026-11-09 | 2026-11-11 | RSZone 1Road 24Irrigation NetworkA94590 |  |  |  | 90.4d | 0d | Labour; Buried Valves [33] |  |  | RD24 |
| RSZone 1Road 24Irrigation NetworkA94610 |  | Zone 1 - Road 24 - Lateral Irrigation Network - Buried Valves - Test | 2d | 2026-11-12 | 2026-11-14 | RSZone 1Road 24Irrigation NetworkA94600 |  |  |  | 94.4d | 0d | Contract Price Original Scope [8877.87 SAR]; Pump Operator [20 h]; Equipment Operator [20 h]; Labour [75.79 h]; Buried Valves [33] | 8,877.87 |  | RD24 |
| RSZone 1Road 24Irrigation NetworkA94620 |  | Zone 1 - Road 24 - Lateral Irrigation Network - Buried Valves - Backfilling | 2d | 2026-11-15 | 2026-11-16 | RSZone 1Road 24Irrigation NetworkA94610 |  |  |  | 94.4d | 93.76d | Contract Price Original Scope [4438.94 SAR]; Excavator Operator [20 h]; Compactor Operator [20 h]; Dump Truck Operator [20 h]; Water Truck Operator [20 h]; Labour [37.9 h]; Buried Valves [33] | 4,438.94 |  | RD24 |

| ID | WBS | Activity | Duration | Start | Finish | Predecessors | Complete | Planned start | Planned finish | Total float | Free float | Resources | Cost | Actual cost | MODON |
| --- | --- | --- | --- | --- | --- | --- | --- | --- | --- | --- | --- | --- | --- | --- | --- |
|  | 2 | **Air Valves** |  | 2026-11-12 | 2026-11-21 |  |  |  |  |  |  |  |  |  |  |
| RSZone 1Road 24Irrigation NetworkA89410 |  | Zone 1 - Road 24 - Lateral Irrigation Network - Air Valves - Surface Box | 3d | 2026-11-12 | 2026-11-15 | RSZone 1Road 24Irrigation NetworkA94600 |  |  |  | 90.4d | 0d | Labour; Washout / Air / FlowMeter Valves [2] |  |  | RD24 |
| RSZone 1Road 24Irrigation NetworkA89400 |  | Zone 1 - Road 24 - Lateral Irrigation Network - Air Valves - Installation | 3d | 2026-11-16 | 2026-11-18 | RSZone 1Road 24Irrigation NetworkA89410 |  |  |  | 90.4d | 0d | Labour; Washout / Air / FlowMeter Valves [2] |  |  | RD24 |
| RSZone 1Road 24Irrigation NetworkA89420 |  | Zone 1 - Road 24 - Lateral Irrigation Network - Air Valves - Test | 2d | 2026-11-19 | 2026-11-21 | RSZone 1Road 24Irrigation NetworkA89400 |  |  |  | 90.4d | 89.76d | Pump Operator [20 h]; Equipment Operator [20 h]; Labour; Washout / Air / FlowMeter Valves [2] |  |  | RD24 |
|  | 4 | **Thrust Block** |  | 2026-10-08 | 2026-11-09 |  |  |  |  |  |  |  |  |  |  |
| RSZone 1Road 24Irrigation NetworkA89780- |  | Zone 1 - Road 24 - Lateral Irrigation Network - Thrust Block - Thrust Block (old) | 21d | 2026-10-08 A | 2026-11-01 A | RSZone 1Road 24Irrigation NetworkA94590 | 100% | 2026-10-08 | 2026-11-02 |  |  | Contract Price Original Scope [1021.76 SAR]; Crane Operator [3 h]; Pump Operator [3 h]; Equipment Operator [3 h]; Labour [8.72 h]; Thrust Blocks [1] | 1,021.76 | 1,021.76 | RD24 |
| RSZone 1Road 24Irrigation NetworkA89780- |  | Zone 1 - Road 24 - Lateral Irrigation Network - Thrust Block - Thrust Block (old) | 1d | 2026-11-09 | 2026-11-09 | RSZone 1Road 24Irrigation NetworkA89780- |  |  |  | 100.4d | 99.76d | Contract Price Original Scope [3065.28 SAR]; Crane Operator [9 h]; Pump Operator [9 h]; Equipment Operator [9 h]; Labour [26.17 h]; Thrust Blocks [3] | 3,065.28 |  | RD24 |
|  | 2 | **Road Crossing** |  | 2025-06-19 | 2026-11-10 |  |  |  |  |  |  |  |  |  |  |
|  | 1 | **Rood Crossing UPVC Selves 300 MM** |  | 2025-06-19 | 2025-06-22 |  |  |  |  |  |  |  |  |  |  |
| RSZone 1Road 24Road CrossingA21830 |  | Zone 1 - Road 24 - Road Crossing - Rood Crossing UPVC Selves 300 MM - Rood Crossing UPVC Selves | 3d | 2025-06-19 A | 2025-06-22 A | RSZone 1Road 02Road CrossingA29870 | 100% | 2025-06-19 | 2025-06-23 |  |  | Contract Price Original Scope [57700.3 SAR]; Excavator Operator [150 h]; Crane Operator [150 h]; Equipment Operator [150 h]; Labour [492.62 h]; Road Crossing Sleeves 300 mm [135] | 57,700.35 | 57,700.35 | RD24 |
|  | 3 | **Rood Crossing UPVC Selves 600MM** |  | 2026-05-04 | 2026-11-10 |  |  |  |  |  |  |  |  |  |  |
| RSZone 1Road 24Road CrossingA21880-old |  | Zone 1 - Road 24 - Road Crossing - Rood Crossing UPVC Selves 600MM - Rood Crossing UPVC Selves (old) | 155d | 2026-05-04 A | 2026-11-01 A | RSZone 1Road 02Road CrossingA29880-old | 100% |  |  |  |  | Contract Price Original Scope [233921 SAR]; Excavator Operator [144.7 h]; Crane Operator [144.7 h]; Equipment Operator [144.7 h]; Labour [1997.1 h]; Road Crossing Sleeves 600 mm [173.64] | 233,920.86 | 233,920.86 | RD24 |
| RSZone 1Road 24Road CrossingA21880 |  | Zone 1 - Road 24 - Road Crossing - Rood Crossing UPVC Selves 600MM - Rood Crossing UPVC Selves | 1d | 2026-11-10 | 2026-11-10 | RSZone 1Road 24Road CrossingA21880-old, RSZone 1Road 02Road CrossingA29880 |  |  |  | 0.21d | 0d | Contract Price Original Scope [8567.94 SAR]; Excavator Operator [5.3 h]; Crane Operator [5.3 h]; Equipment Operator [5.3 h]; Labour [73.15 h]; Road Crossing Sleeves 600 mm [6.36] | 8,567.94 |  | RD24 |
|  | 12 | **Telecom Network** |  | 2026-07-02 | 2026-11-22 |  |  |  |  |  |  |  |  |  |  |
|  | 3 | **Telecom Pipe** |  | 2026-07-02 | 2026-11-22 |  |  |  |  |  |  |  |  |  |  |
| RSZone 1Road 24Telecom NetworkA59040-old |  | Zone 1 - Road 24 - Telecom Network - Telecom Pipe - Excavation (old) | 104d | 2026-07-02 A | 2026-11-01 A | RSZone 1Road 24Telecom NetworkA59050-old | 100% | 2026-07-02 | 2026-11-02 |  |  | Contract Price Original Scope [20016.8 SAR]; Excavator Operator [6.1 h]; Dump Truck Operator [6.1 h]; Labour [170.89 h]; Telecom Pipe [928.83] | 20,016.83 | 20,016.83 | RD24 |
| RSZone 1Road 24Telecom NetworkA59050-old |  | Zone 1 - Road 24 - Telecom Network - Telecom Pipe - Concrete Pouring (old) | 102d | 2026-07-05 A | 2026-11-01 A | RSZone 1Road 24Telecom NetworkA59070-old | 100% |  |  |  |  | Contract Price Original Scope [140471 SAR]; Crane Operator [2.65 h]; Pump Operator [2.65 h]; Equipment Operator [2.65 h]; Labour [1199.27 h]; Telecom Pipe [931.17] | 140,471.21 | 140,471.21 | RD24 |
| RSZone 1Road 24Telecom NetworkA59070-old |  | Zone 1 - Road 24 - Telecom Network - Telecom Pipe - Backfilling (old) | 101d | 2026-07-06 A | 2026-11-01 A | RSZone 1Road 09Telecom NetworkA58590-old | 100% |  |  |  |  | Contract Price Original Scope [13453.9 SAR]; Excavator Operator [2.73 h]; Compactor Operator [2.73 h]; Dump Truck Operator [2.73 h]; Water Truck Operator [2.73 h]; Labour [114.86 h]; Telecom Pipe [624.29] | 13,453.94 | 13,453.94 | RD24 |
| RSZone 1Road 24Telecom NetworkA59070 |  | Zone 1 - Road 24 - Telecom Network - Telecom Pipe - Backfilling | 1.73d | 2026-11-14 | 2026-11-15 | RSZone 1Road 24Telecom NetworkA59070-old, RSZone 1Road 09Telecom NetworkA58590 |  |  |  | 94.43d | 0d | Contract Price Original Scope [84989.5 SAR]; Excavator Operator [17.27 h]; Compactor Operator [17.27 h]; Dump Truck Operator [17.27 h]; Water Truck Operator [17.27 h]; Labour [725.6 h]; Telecom Pipe [3943.71] | 84,989.5 |  | RD24 |
| RSZone 1Road 24Telecom NetworkA59050 |  | Zone 1 - Road 24 - Telecom Network - Telecom Pipe - Concrete Pouring | 1.03d | 2026-11-15 | 2026-11-16 | RSZone 1Road 24Telecom NetworkA59050-old, RSZone 1Road 24Telecom NetworkA59070 |  |  |  | 94.43d | 0d | Contract Price Original Scope [548633 SAR]; Crane Operator [10.35 h]; Pump Operator [10.35 h]; Equipment Operator [10.35 h]; Labour [4683.94 h]; Telecom Pipe [3636.83] | 548,632.85 |  | RD24 |
| RSZone 1Road 24Telecom NetworkA59040 |  | Zone 1 - Road 24 - Telecom Network - Telecom Pipe - Excavation | 2.39d | 2026-11-16 | 2026-11-19 | RSZone 1Road 24Telecom NetworkA59040-old, RSZone 1Road 24Telecom NetworkA59050 |  |  |  | 95.04d | 0d | Contract Price Original Scope [78426.6 SAR]; Excavator Operator [23.9 h]; Dump Truck Operator [23.9 h]; Labour [669.57 h]; Telecom Pipe [3639.17] | 78,426.61 |  | RD24 |
| RSZone 1Road 24Telecom NetworkA59060 |  | Zone 1 - Road 24 - Telecom Network - Telecom Pipe - Test | 2d | 2026-11-19 | 2026-11-22 | RSZone 1Road 24Telecom NetworkA59040, RSZone 1Road 24Telecom NetworkA59050, RSZone 1Road 24Telecom NetworkA59070 |  |  |  | 95.04d | 94.64d | Contract Price Original Scope [98443.4 SAR]; Pump Operator [20 h]; Equipment Operator [20 h]; Labour [840.46 h]; Telecom Pipe [4568] | 98,443.44 |  | RD24 |
|  | 2 | **TELECOM MANHOLE** |  | 2026-07-19 | 2026-11-10 |  |  |  |  |  |  |  |  |  |  |
| RSZone 1Road 24Telecom NetworkA68000-old |  | Zone 1 - Road 24 - Telecom Network - TELECOM MANHOLE - Manhole Installation (old) | 90d | 2026-07-19 A | 2026-11-01 A | RSZone 1Road 09Telecom NetworkA67880-old | 100% |  |  |  |  | Contract Price Original Scope [199607 SAR]; Crane Operator [13.3 h]; Boom Truck Operator [13.3 h]; Equipment Operator [13.3 h]; Labour [1704.14 h]; Telecom Manhole [13.3] | 199,607.33 | 199,607.33 | RD24 |
| RSZone 1Road 24Telecom NetworkA68000 |  | Zone 1 - Road 24 - Telecom Network - TELECOM MANHOLE - Manhole Installation | 1d | 2026-11-10 | 2026-11-10 | RSZone 1Road 24Telecom NetworkA68000-old, RSZone 1Road 09Telecom NetworkA67880 |  |  |  | 76.4d | 0d | Contract Price Original Scope [10505.6 SAR]; Crane Operator [0.7 h]; Boom Truck Operator [0.7 h]; Equipment Operator [0.7 h]; Labour [89.69 h]; Telecom Manhole [0.7] | 10,505.65 |  | RD24 |

| ID | WBS | Activity | Duration | Start | Finish | Predecessors | Complete | Planned start | Planned finish | Total float | Free float | Resources | Cost | Actual cost | MODON |
| --- | --- | --- | --- | --- | --- | --- | --- | --- | --- | --- | --- | --- | --- | --- | --- |
|  | 11 | **Road 25** |  | 2025-06-22 | 2027-02-04 |  |  |  |  |  |  |  |  |  |  |
|  | 6 | **Storm Network** |  | 2025-09-21 | 2026-11-21 |  |  |  |  |  |  |  |  |  |  |
|  | 2 | **Gullies & Catchbasin Pipes** |  | 2026-05-31 | 2026-11-21 |  |  |  |  |  |  |  |  |  |  |
| RSZone 1Road 25Storm NetworkA38290-old |  | Zone 1 - Road 25 - Storm Network - Gullies & Catchbasin Pipes - Excavation (old) | 132d | 2026-05-31 A | 2026-11-01 A | RSZone 1Road 24Storm NetworkA45460-old | 100% |  |  |  |  | Contract Price Original Scope [19186.4 SAR]; Excavator Operator [25.25 h]; Dump Truck Operator [25.25 h]; Labour [163.8 h]; Gullies & Catchbasin Pipes (300 mm) [478.91] | 19,186.42 | 19,186.42 | RD25 |
| RSZone 1Road 25Storm NetworkA38300-old |  | Zone 1 - Road 25 - Storm Network - Gullies & Catchbasin Pipes - Bedding (old) | 130d | 2026-06-02 A | 2026-11-01 A | RSZone 1Road 25Storm NetworkA38290-old | 100% |  |  |  |  | Contract Price Original Scope [57693.5 SAR]; Compactor Operator [16.83 h]; Equipment Operator [16.83 h]; Water Truck Operator [16.83 h]; Labour [492.56 h]; Gullies & Catchbasin Pipes - Bedding [478.91] | 57,693.46 | 57,693.46 | RD25 |
| RSZone 1Road 25Storm NetworkA38310-old |  | Zone 1 - Road 25 - Storm Network - Gullies & Catchbasin Pipes - Pipe Installation (old) | 129d | 2026-06-03 A | 2026-11-01 A | RSZone 1Road 25Storm NetworkA38300-old | 100% |  |  |  |  | Contract Price Original Scope [134305 SAR]; Excavator Operator [33.67 h]; Crane Operator [33.67 h]; Equipment Operator [33.67 h]; Labour [1146.63 h]; Gullies & Catchbasin Pipes (300 mm) [478.91] | 134,304.95 | 134,304.95 | RD25 |
| RSZone 1Road 25Storm NetworkA38320-old |  | Zone 1 - Road 25 - Storm Network - Gullies & Catchbasin Pipes - Test (old) | 128d | 2026-06-04 A | 2026-11-01 A | RSZone 1Road 25Storm NetworkA38310-old | 100% | 2026-06-04 | 2026-11-02 |  |  | Contract Price Original Scope [18787.5 SAR]; Pump Operator [16.48 h]; Equipment Operator [16.48 h]; Labour [160.4 h]; Gullies & Catchbasin Pipes (300 mm) [468.95] | 18,787.5 | 18,787.5 | RD25 |
| RSZone 1Road 25Storm NetworkA38330-old |  | Zone 1 - Road 25 - Storm Network - Gullies & Catchbasin Pipes - Backfilling (old) | 126d | 2026-06-07 A | 2026-11-01 A | RSZone 1Road 25Storm NetworkA38320-old | 100% |  |  |  |  | Contract Price Original Scope [18787.5 SAR]; Excavator Operator [16.48 h]; Compactor Operator [16.48 h]; Dump Truck Operator [16.48 h]; Water Truck Operator [16.48 h]; Labour [160.4 h]; Gullies & Catchbasin Pipes (300 mm) [468.95] | 18,787.5 | 18,787.5 | RD25 |
| RSZone 1Road 25Storm NetworkA38290 |  | Zone 1 - Road 25 - Storm Network - Gullies & Catchbasin Pipes - Excavation | 1d | 2026-11-15 | 2026-11-16 | RSZone 1Road 25Storm NetworkA38290-old, RSZone 1Road 24Storm NetworkA45460 |  |  |  | 114.96d | 0d | Contract Price Original Scope [3609.33 SAR]; Excavator Operator [4.75 h]; Dump Truck Operator [4.75 h]; Labour [30.81 h]; Gullies & Catchbasin Pipes (300 mm) [90.09] | 3,609.33 |  | RD25 |
| RSZone 1Road 25Storm NetworkA38300 |  | Zone 1 - Road 25 - Storm Network - Gullies & Catchbasin Pipes - Bedding | 1d | 2026-11-16 | 2026-11-17 | RSZone 1Road 25Storm NetworkA38300-old, RSZone 1Road 25Storm NetworkA38290 |  |  |  | 114.96d | 0d | Contract Price Original Scope [10853.2 SAR]; Compactor Operator [3.17 h]; Equipment Operator [3.17 h]; Water Truck Operator [3.17 h]; Labour [92.66 h]; Gullies & Catchbasin Pipes - Bedding [90.09] | 10,853.23 |  | RD25 |
| RSZone 1Road 25Storm NetworkA38310 |  | Zone 1 - Road 25 - Storm Network - Gullies & Catchbasin Pipes - Pipe Installation | 1d | 2026-11-17 | 2026-11-18 | RSZone 1Road 25Storm NetworkA38310-old, RSZone 1Road 25Storm NetworkA38300 |  |  |  | 114.96d | 0d | Contract Price Original Scope [25265.3 SAR]; Excavator Operator [6.33 h]; Crane Operator [6.33 h]; Equipment Operator [6.33 h]; Labour [215.7 h]; Gullies & Catchbasin Pipes (300 mm) [90.09] | 25,265.29 |  | RD25 |
| RSZone 1Road 25Storm NetworkA38320 |  | Zone 1 - Road 25 - Storm Network - Gullies & Catchbasin Pipes - Test | 1d | 2026-11-18 | 2026-11-19 | RSZone 1Road 25Storm NetworkA38320-old, RSZone 1Road 25Storm NetworkA38310 |  |  |  | 114.96d | 0d | Contract Price Original Scope [4008.25 SAR]; Pump Operator [3.52 h]; Equipment Operator [3.52 h]; Labour [34.22 h]; Gullies & Catchbasin Pipes (300 mm) [100.05] | 4,008.25 |  | RD25 |
| RSZone 1Road 25Storm NetworkA38330 |  | Zone 1 - Road 25 - Storm Network - Gullies & Catchbasin Pipes - Backfilling | 1d | 2026-11-19 | 2026-11-21 | RSZone 1Road 25Storm NetworkA38330-old, RSZone 1Road 25Storm NetworkA38320 |  |  |  | 114.96d | 100.56d | Contract Price Original Scope [4008.25 SAR]; Excavator Operator [3.52 h]; Compactor Operator [3.52 h]; Dump Truck Operator [3.52 h]; Water Truck Operator [3.52 h]; Labour [34.22 h]; Gullies & Catchbasin Pipes (300 mm) [100.05] | 4,008.25 |  | RD25 |
|  | 1 | **Perforated 160 mm** |  | 2025-10-05 | 2026-11-10 |  |  |  |  |  |  |  |  |  |  |
| RSZone 1Road 25Storm NetworkA48890 |  | Zone 1 - Road 25 - Storm Network - Perforated 160 mm - Excavation | 3d | 2025-10-05 A | 2025-10-07 A | RSZone 1Road 24Storm NetworkA51960 | 100% |  |  |  |  | Contract Price Original Scope [543.43 SAR]; Excavator Operator [30 h]; Dump Truck Operator [30 h]; Labour [4.64 h]; Perforated 160 mm [34] | 543.43 | 543.43 | RD25 |
| RSZone 1Road 25Storm NetworkA48900 |  | Zone 1 - Road 25 - Storm Network - Perforated 160 mm - Bedding | 1.9d | 2025-10-08 A | 2025-10-09 A | RSZone 1Road 25Storm NetworkA48890 | 100% |  |  |  |  | Contract Price Original Scope [271.71 SAR]; Compactor Operator [20 h]; Equipment Operator [20 h]; Water Truck Operator [20 h]; Labour [2.32 h]; Perforated 160 mm [34] | 271.71 | 271.71 | RD25 |
| RSZone 1Road 25Storm NetworkA48910 |  | Zone 1 - Road 25 - Storm Network - Perforated 160 mm - Pipe Installation | 7d | 2025-10-12 A | 2025-10-19 A | RSZone 1Road 25Storm NetworkA48900 | 100% |  |  |  |  | Contract Price Original Scope [3532.28 SAR]; Excavator Operator [40 h]; Crane Operator [40 h]; Equipment Operator [40 h]; Labour [30.16 h]; Perforated 160 mm [34] | 3,532.28 | 3,532.28 | RD25 |
| RSZone 1Road 25Storm NetworkA48930 |  | Zone 1 - Road 25 - Storm Network - Perforated 160 mm - Backfilling | 2d | 2025-10-20 A | 2025-10-21 A | RSZone 1Road 25Storm NetworkA48910 | 100% |  |  |  |  | Contract Price Original Scope [543.43 SAR]; Excavator Operator [20 h]; Compactor Operator [20 h]; Dump Truck Operator [20 h]; Water Truck Operator [20 h]; Labour [4.64 h]; Perforated 160 mm [34] | 543.43 | 543.43 | RD25 |
| RSZone 1Road 25Storm NetworkA48920 |  | Zone 1 - Road 25 - Storm Network - Perforated 160 mm - Test | 2d | 2026-11-09 | 2026-11-10 | RSZone 1Road 25Storm NetworkA48930 |  |  |  | 123.4d | 109d | Contract Price Original Scope [543.43 SAR]; Pump Operator [20 h]; Equipment Operator [20 h]; Labour [4.64 h]; Perforated 160 mm [34] | 543.43 |  | RD25 |
|  | 11 | **Gravel and Geotextile** |  | 2025-10-22 | 2025-10-26 |  |  |  |  |  |  |  |  |  |  |
| RSZone 1Road 25Storm NetworkA52070 |  | Zone 1 - Road 25 - Storm Network - Gravel and Geotextile - Installation | 4d | 2025-10-22 A | 2025-10-26 A | RSZone 1Road 25Storm NetworkA48930 | 100% |  |  |  |  | Contract Price Original Scope [856747 SAR]; Excavator Operator [7 h]; Dump Truck Operator [7 h]; Equipment Operator [7 h]; Water Truck Operator [7 h]; Labour [7314.46 h]; Gravel and Geotextile [7304] | 856,746.52 | 856,746.52 | RD25 |
|  | 12 | **Inspection Chamber** |  | 2026-06-03 | 2026-11-16 |  |  |  |  |  |  |  |  |  |  |
| RSZone 1Road 25Storm NetworkA53240-old |  | Zone 1 - Road 25 - Storm Network - Inspection Chamber - Excavation (old) | 129d | 2026-06-03 A | 2026-11-01 A | RSZone 1Road 25Storm NetworkA51480 | 100% |  |  |  |  | Contract Price Original Scope [319279 SAR]; Excavator Operator [29.62 h]; Dump Truck Operator [29.62 h]; Labour [2725.84 h]; Inspection Chamber [77.01] | 319,278.64 | 319,278.64 | RD25 |
| RSZone 1Road 25Storm NetworkA53250-old |  | Zone 1 - Road 25 - Storm Network - Inspection Chamber - IC Installation (old) | 128d | 2026-06-04 A | 2026-11-01 A | RSZone 1Road 25Storm NetworkA53240-old | 100% | 2026-06-04 | 2026-11-02 |  |  | Contract Price Original Scope [1276791 SAR]; Crane Operator [39.48 h]; Boom Truck Operator [39.48 h]; Equipment Operator [39.48 h]; Labour [10900.6 h]; Inspection Chamber [76.99] | 1,276,791.2 | 1,276,791.2 | RD25 |
| RSZone 1Road 25Storm NetworkA53240 |  | Zone 1 - Road 25 - Storm Network - Inspection Chamber - Excavation | 1d | 2026-11-02 A | 2026-11-05 A | RSZone 1Road 25Storm NetworkA53240-old | 100% | 2026-11-02 | 2026-11-02 |  |  | Contract Price Original Scope [4096.08 SAR]; Excavator Operator [0.38 h]; Dump Truck Operator [0.38 h]; Labour [34.97 h]; Inspection Chamber [0.99] | 4,096.08 | 4,096.08 | RD25 |
| RSZone 1Road 25Storm NetworkA53250 |  | Zone 1 - Road 25 - Storm Network - Inspection Chamber - IC Installation | 1d | 2026-11-02 A | 2026-11-05 A | RSZone 1Road 25Storm NetworkA53250-old, RSZone 1Road 25Storm NetworkA53240 | 100% | 2026-11-03 | 2026-11-03 |  |  | Contract Price Original Scope [16707.7 SAR]; Crane Operator [0.52 h]; Boom Truck Operator [0.52 h]; Equipment Operator [0.52 h]; Labour [142.64 h]; Inspection Chamber [1.01] | 16,707.69 | 16,707.69 | RD25 |
| RSZone 1Road 25Storm NetworkA53270 |  | Zone 1 - Road 25 - Storm Network - Inspection Chamber - Inner Isolation | 2d | 2026-11-09 | 2026-11-10 | RSZone 1Road 25Storm NetworkA53250 |  |  |  | 74.4d | 0d | Contract Price Original Scope [215583 SAR]; Equipment Operator [20 h]; Labour [1840.54 h]; Inspection Chamber [78] | 215,583.15 |  | RD25 |
| RSZone 1Road 25Storm NetworkA53260 |  | Zone 1 - Road 25 - Storm Network - Inspection Chamber - D.I | 3d | 2026-11-11 | 2026-11-14 | RSZone 1Road 25Storm NetworkA53270, RSZone 1Road 25Storm NetworkA53240 |  |  |  | 118.4d | 0d | Contract Price Original Scope [215583 SAR]; Crane Operator [7 h]; Boom Truck Operator [7 h]; Equipment Operator [7 h]; Labour [1840.54 h]; Inspection Chamber [78] | 215,583.15 |  | RD25 |
| RSZone 1Road 25Storm NetworkA53280 |  | Zone 1 - Road 25 - Storm Network - Inspection Chamber - Backfilling | 2d | 2026-11-15 | 2026-11-16 | RSZone 1Road 25Storm NetworkA53260 |  |  |  | 118.4d | 104d | Contract Price Original Scope [107792 SAR]; Excavator Operator [20 h]; Compactor Operator [20 h]; Dump Truck Operator [20 h]; Water Truck Operator [20 h]; Labour [920.27 h]; Inspection Chamber [78] | 107,791.57 |  | RD25 |

| ID | WBS | Activity | Duration | Start | Finish | Predecessors | Complete | Total float | Free float | Resources | Cost | Actual cost | MODON |
| --- | --- | --- | --- | --- | --- | --- | --- | --- | --- | --- | --- | --- | --- |
|  | 8 | **Perforated 200 mm** |  | 2025-10-15 | 2026-11-10 |  |  |  |  |  |  |  |  |
| RSZone 1Road 25Storm NetworkA51440 |  | Zone 1 - Road 25 - Storm Network - Perforated 200 mm - Excavation | 4d | 2025-10-15 A | 2025-10-19 A | RSZone 1Road 25Storm NetworkA52070 | 100% |  |  | Contract Price Original Scope [184285 SAR]; Excavator Operator [30 h]; Dump Truck Operator [30 h]; Labour [1573.33 h]; Perforated 200 mm [7270] | 184,284.51 | 184,284.51 | RD25 |
| RSZone 1Road 25Storm NetworkA51450 |  | Zone 1 - Road 25 - Storm Network - Perforated 200 mm - Bedding | 2d | 2025-10-20 A | 2025-10-21 A | RSZone 1Road 25Storm NetworkA51440 | 100% |  |  | Contract Price Original Scope [92142.2 SAR]; Compactor Operator [20 h]; Equipment Operator [20 h]; Water Truck Operator [20 h]; Labour [786.66 h]; Perforated 200 mm [7270] | 92,142.25 | 92,142.25 | RD25 |
| RSZone 1Road 25Storm NetworkA51460 |  | Zone 1 - Road 25 - Storm Network - Perforated 200 mm - Pipe Installation | 5d | 2025-10-21 A | 2025-10-26 A | RSZone 1Road 25Storm NetworkA51450 | 100% |  |  | Contract Price Original Scope [1197849 SAR]; Excavator Operator [40 h]; Crane Operator [40 h]; Equipment Operator [40 h]; Labour [10226.6 h]; Perforated 200 mm [7270] | 1,197,849.31 | 1,197,849.31 | RD25 |
| RSZone 1Road 25Storm NetworkA51480 |  | Zone 1 - Road 25 - Storm Network - Perforated 200 mm - Backfilling | 3.9d | 2025-10-27 A | 2025-10-30 A | RSZone 1Road 25Storm NetworkA51460 | 100% |  |  | Contract Price Original Scope [184285 SAR]; Excavator Operator [20 h]; Compactor Operator [20 h]; Dump Truck Operator [20 h]; Water Truck Operator [20 h]; Labour [1573.33 h]; Perforated 200 mm [7270] | 184,284.51 | 184,284.51 | RD25 |
| RSZone 1Road 25Storm NetworkA51470 |  | Zone 1 - Road 25 - Storm Network - Perforated 200 mm - Test | 2d | 2026-11-09 | 2026-11-10 | RSZone 1Road 25Storm NetworkA51480 |  | 123.4d | 109d | Contract Price Original Scope [184285 SAR]; Pump Operator [20 h]; Equipment Operator [20 h]; Labour [1573.33 h]; Perforated 200 mm [7270] | 184,284.51 |  | RD25 |
|  | 4 | **Gully outfalls** |  | 2025-09-21 | 2026-11-16 |  |  |  |  |  |  |  |  |
| RSZone 1Road 25Storm NetworkA42090 |  | Zone 1 - Road 25 - Storm Network - Gully outfalls - Excavation | 3.9d | 2025-09-21 A | 2025-09-25 A | RSZone 1Road 25Storm NetworkA51480 | 100% |  |  | Contract Price Original Scope [4018.51 SAR]; Excavator Operator [30 h]; Dump Truck Operator [30 h]; Labour [34.31 h]; Gully outfalls [4] | 4,018.51 | 4,018.51 | RD25 |
| RSZone 1Road 25Storm NetworkA42100 |  | Zone 1 - Road 25 - Storm Network - Gully outfalls - Installation | 2d | 2025-09-28 A | 2025-09-29 A | RSZone 1Road 25Storm NetworkA42090 | 100% |  |  | Contract Price Original Scope [16074 SAR]; Crane Operator [7 h]; Equipment Operator [7 h]; Labour [137.23 h]; Gully outfalls [4] | 16,074.05 | 16,074.05 | RD25 |
| RSZone 1Road 25Storm NetworkA42120 |  | Zone 1 - Road 25 - Storm Network - Gully outfalls - Inner Isolation | 2d | 2026-11-09 | 2026-11-10 | RSZone 1Road 25Storm NetworkA42100 |  | 118.4d | 0d | Contract Price Original Scope [2679.01 SAR]; Equipment Operator [20 h]; Labour [22.87 h]; Gully outfalls [4] | 2,679.01 |  | RD25 |
| RSZone 1Road 25Storm NetworkA42110 |  | Zone 1 - Road 25 - Storm Network - Gully outfalls - D.I | 3d | 2026-11-11 | 2026-11-14 | RSZone 1Road 25Storm NetworkA42120 |  | 118.4d | 0d | Contract Price Original Scope [2679.01 SAR]; Crane Operator [7 h]; Boom Truck Operator [7 h]; Equipment Operator [7 h]; Labour [22.87 h]; Gully outfalls [4] | 2,679.01 |  | RD25 |
| RSZone 1Road 25Storm NetworkA42130 |  | Zone 1 - Road 25 - Storm Network - Gully outfalls - Backfilling | 2d | 2026-11-15 | 2026-11-16 | RSZone 1Road 25Storm NetworkA42110 |  | 118.4d | 104d | Contract Price Original Scope [1339.5 SAR]; Excavator Operator [20 h]; Compactor Operator [20 h]; Dump Truck Operator [20 h]; Water Truck Operator [20 h]; Labour [11.44 h]; Gully outfalls [4] | 1,339.5 |  | RD25 |
|  | 5 | **Catch Basins** |  | 2025-09-28 | 2026-11-16 |  |  |  |  |  |  |  |  |
| RSZone 1Road 25Storm NetworkA43340 |  | Zone 1 - Road 25 - Storm Network - Catch Basins - Excavation | 4.9d | 2025-09-28 A | 2025-10-02 A | RSZone 1Road 25Storm NetworkA42100 | 100% |  |  | Contract Price Original Scope [20662.4 SAR]; Excavator Operator [30 h]; Dump Truck Operator [30 h]; Labour [176.41 h]; Catch Basins [6] | 20,662.41 | 20,662.41 | RD25 |
| RSZone 1Road 25Storm NetworkA43350 |  | Zone 1 - Road 25 - Storm Network - Catch Basins - Installation | 3d | 2025-10-05 A | 2025-10-07 A | RSZone 1Road 25Storm NetworkA43340 | 100% |  |  | Contract Price Original Scope [82649.6 SAR]; Crane Operator [7 h]; Boom Truck Operator [7 h]; Equipment Operator [7 h]; Labour [705.62 h]; Catch Basins [6] | 82,649.65 | 82,649.65 | RD25 |
| RSZone 1Road 25Storm NetworkA43370 |  | Zone 1 - Road 25 - Storm Network - Catch Basins - Inner Isolation | 2d | 2026-11-09 | 2026-11-10 | RSZone 1Road 25Storm NetworkA43350 |  | 117.4d | 0d | Contract Price Original Scope [13774.9 SAR]; Equipment Operator [20 h]; Labour [117.6 h]; Catch Basins [6] | 13,774.94 |  | RD25 |
| RSZone 1Road 25Storm NetworkA43360 |  | Zone 1 - Road 25 - Storm Network - Catch Basins - D.I | 3d | 2026-11-11 | 2026-11-14 | RSZone 1Road 25Storm NetworkA43370 |  | 117.4d | 0d | Contract Price Original Scope [13774.9 SAR]; Crane Operator [7 h]; Boom Truck Operator [7 h]; Equipment Operator [7 h]; Labour [117.6 h]; Catch Basins [6] | 13,774.94 |  | RD25 |
| RSZone 1Road 25Storm NetworkA43380 |  | Zone 1 - Road 25 - Storm Network - Catch Basins - Backfilling | 2d | 2026-11-15 | 2026-11-16 | RSZone 1Road 25Storm NetworkA43360 |  | 118.4d | 104d | Contract Price Original Scope [6887.47 SAR]; Excavator Operator [20 h]; Compactor Operator [20 h]; Dump Truck Operator [20 h]; Water Truck Operator [20 h]; Labour [58.8 h]; Catch Basins [6] | 6,887.47 |  | RD25 |
|  | 7 | **Soakaway** |  | 2025-11-04 | 2026-11-17 |  |  |  |  |  |  |  |  |
| RSZone 1Road 25Storm NetworkA44390 |  | Zone 1 - Road 25 - Storm Network - Soakaway - Excavation | 5d | 2025-11-04 A | 2025-11-09 A | RSZone 1Road 25Storm NetworkA43350 | 100% |  |  | Contract Price Original Scope [28716.5 SAR]; Excavator Operator [30 h]; Dump Truck Operator [30 h]; Labour [245.17 h]; Soakaway [9] | 28,716.53 | 28,716.53 | RD25 |
| RSZone 1Road 25Storm NetworkA44400 |  | Zone 1 - Road 25 - Storm Network - Soakaway - Installation | 2d | 2025-11-10 A | 2025-11-11 A | RSZone 1Road 25Storm NetworkA44390 | 100% |  |  | Contract Price Original Scope [114866 SAR]; Crane Operator [7 h]; Equipment Operator [7 h]; Labour [980.67 h]; Soakaway [9] | 114,866.12 | 114,866.12 | RD25 |
| RSZone 1Road 25Storm NetworkA44420-old |  | Zone 1 - Road 25 - Storm Network - Soakaway - Inner Isolation (old) | 132d | 2026-05-31 A | 2026-11-01 A | RSZone 1Road 25Storm NetworkA44400, RSZone 1Road 25Storm NetworkA53250-old | 100% |  |  | Contract Price Original Scope [4259.62 SAR]; Equipment Operator [4.45 h]; Labour [36.37 h]; Soakaway [2] | 4,259.62 | 4,259.62 | RD25 |
| RSZone 1Road 25Storm NetworkA44430-old |  | Zone 1 - Road 25 - Storm Network - Soakaway - Backfilling (old) | 130d | 2026-06-02 A | 2026-11-01 A | RSZone 1Road 25Storm NetworkA44420-old | 100% |  |  | Contract Price Original Scope [2129.81 SAR]; Excavator Operator [4.45 h]; Compactor Operator [4.45 h]; Dump Truck Operator [4.45 h]; Water Truck Operator [4.45 h]; Labour [18.18 h]; Soakaway [2] | 2,129.81 | 2,129.81 | RD25 |
| RSZone 1Road 25Storm NetworkA44420 |  | Zone 1 - Road 25 - Storm Network - Soakaway - Inner Isolation | 1.56d | 2026-11-09 | 2026-11-10 | RSZone 1Road 25Storm NetworkA44420-old, RSZone 1Road 25Storm NetworkA53250 |  | 94.71d | 0d | Contract Price Original Scope [14884.7 SAR]; Equipment Operator [15.55 h]; Labour [127.08 h]; Soakaway [7] | 14,884.73 |  | RD25 |
| RSZone 1Road 25Storm NetworkA44430 |  | Zone 1 - Road 25 - Storm Network - Soakaway - Backfilling | 1.56d | 2026-11-10 | 2026-11-12 | RSZone 1Road 25Storm NetworkA44430-old, RSZone 1Road 25Storm NetworkA44420 |  | 94.71d | 0d | Contract Price Original Scope [7442.37 SAR]; Excavator Operator [15.55 h]; Compactor Operator [15.55 h]; Dump Truck Operator [15.55 h]; Water Truck Operator [15.55 h]; Labour [63.54 h]; Soakaway [7] | 7,442.37 |  | RD25 |
| RSZone 1Road 25Storm NetworkA44410 |  | Zone 1 - Road 25 - Storm Network - Soakaway - D.I | 3d | 2026-11-15 | 2026-11-17 | RSZone 1Road 25Storm NetworkA44430, RSZone 1Road 25Storm NetworkA43360, RSZone 1Road 25Storm NetworkA44420 |  | 117.4d | 103d | Contract Price Original Scope [19144.3 SAR]; Crane Operator [7 h]; Boom Truck Operator [7 h]; Equipment Operator [7 h]; Labour [163.44 h]; Soakaway [9] | 19,144.35 |  | RD25 |

| ID | WBS | Activity | Duration | Start | Finish | Predecessors | Complete | Planned start | Planned finish | Total float | Free float | Resources | Cost | Actual cost | MODON |
| --- | --- | --- | --- | --- | --- | --- | --- | --- | --- | --- | --- | --- | --- | --- | --- |
|  | 8 | **Ponds** |  | 2025-09-24 | 2026-12-21 |  |  |  |  |  |  |  |  |  |  |
| RSZone 1Road 25PondsA28960 |  | Zone 1 - Road 25 - Storm Network - Ponds - Clearnce | 4d | 2025-09-24 A | 2025-09-28 A | Engineering Approval.7 | 100% |  |  |  |  | Contract Price Original Scope [649687 SAR]; Excavator Operator [58 h]; Dump Truck Operator [58 h]; Equipment Operator [58 h]; Labour [5546.69 h]; Ponds - Clearnce [239737] | 649,687.27 | 649,687.27 | RD25 |
| RSZone 1Road 25PondsA29020 |  | Zone 1 - Road 25 - Storm Network - Ponds - blinding & Walls Concerete | 3d | 2025-10-13 A | 2025-10-15 A | RSZone 1Road 25PondsA28960 | 100% |  |  |  |  | Contract Price Original Scope [7129.15 SAR]; Crane Operator [55 h]; Pump Operator [55 h]; Equipment Operator [55 h]; Labour [60.86 h]; Ponds - blinding & Walls Concerete [7] | 7,129.15 | 7,129.15 | RD25 |
| RSZone 1Road 25PondsA29030 |  | Zone 1 - Road 25 - Storm Network - Ponds - RAFT Concerete | 3d | 2025-10-16 A | 2025-10-19 A | RSZone 1Road 25PondsA29020 | 100% | 2025-10-16 | 2025-10-20 |  |  | Contract Price Original Scope [22971.2 SAR]; Equipment Operator [55 h]; Labour [196.12 h]; Ponds - RAFT Concerete [23] | 22,971.22 | 22,971.22 | RD25 |
| RSZone 1Road 25PondsA29060 |  | Zone 1 - Road 25 - Storm Network - Ponds - Perimeter waterproof | 2.9d | 2025-10-21 A | 2025-10-23 A | RSZone 1Road 25PondsA29030 | 100% |  |  |  |  | Contract Price Original Scope [13634.4 SAR]; Equipment Operator [110 h]; Labour [116.4 h]; Ponds - Perimeter waterproof [240] | 13,634.4 | 13,634.4 | RD25 |
| RSZone 1Road 25PondsA89790 |  | Zone 1 - Road 25 - Storm Network - Ponds - Vertical Concrete (G143) | 2d | 2025-10-28 A | 2025-10-29 A | RSZone 1Road 25PondsA29060 | 100% |  |  |  |  | Contract Price Original Scope [7051.56 SAR]; Equipment Operator [55 h]; Labour [60.2 h]; Ponds - Vertical Concrete (G143) [6.39] | 7,051.56 | 7,051.56 | RD25 |
| RSZone 1Road 25PondsA89800 |  | Zone 1 - Road 25 - Storm Network - Ponds - Reinforcement Steel 12 mm (G524) | 5d | 2025-10-30 A | 2025-11-04 A | RSZone 1Road 25PondsA89790 | 100% | 2025-10-30 | 2025-11-05 |  |  | Contract Price Original Scope [81361.8 SAR]; Equipment Operator [55 h]; Labour [694.62 h]; Ponds - Reinforcement Steel 12 mm (G524) [14.02] | 81,361.79 | 81,361.79 | RD25 |
| RSZone 1Road 25PondsA28970-old |  | Zone 1 - Road 25 - Storm Network - Ponds - Excavation (old) | 150d | 2026-05-10 A | 2026-11-01 A | RSZone 1Road 25PondsA28980-old | 100% |  |  |  |  | Contract Price Original Scope [2835403 SAR]; Excavator Operator [27.47 h]; Dump Truck Operator [27.47 h]; Labour [24207.2 h]; Ponds - Excavation [184958] | 2,835,402.87 | 2,835,402.87 | RD25 |
| RSZone 1Road 25PondsA28980-old |  | Zone 1 - Road 25 - Storm Network - Ponds - Disposal Material (old) | 149d | 2026-05-11 A | 2026-11-01 A | RSZone 1Road 25PondsA89800 | 100% |  |  |  |  | Contract Price Original Scope [2054451 SAR]; Excavator Operator [107.8 h]; Dump Truck Operator [107.8 h]; Equipment Operator [107.8 h]; Labour [17539.8 h]; Ponds - Disposal Material [162794] | 2,054,451.29 | 2,054,451.29 | RD25 |
| RSZone 1Road 25PondsA28990-old |  | Zone 1 - Road 25 - Storm Network - Ponds - Filter (old) | 148d | 2026-05-12 A | 2026-11-01 A | RSZone 1Road 25PondsA29010-old | 100% |  |  |  |  | Contract Price Original Scope [50744.7 SAR]; Equipment Operator [41.98 h]; Labour [433.23 h]; Ponds - Filter [294.63] | 50,744.65 | 50,744.65 | RD25 |
| RSZone 1Road 25PondsA29000-old |  | Zone 1 - Road 25 - Storm Network - Ponds - HDPE geomembrane waterproofing (old) | 146d | 2026-05-14 A | 2026-11-01 A | RSZone 1Road 25PondsA28990-old | 100% | 2026-05-14 | 2026-11-02 |  |  | Contract Price Original Scope [232328 SAR]; Equipment Operator [58.45 h]; Labour [1983.5 h]; Ponds - HDPE geomembrane waterproofing [4861.45] | 232,328.5 | 232,328.5 | RD25 |
| RSZone 1Road 25PondsA29010-old |  | Zone 1 - Road 25 - Storm Network - Ponds - Siphon pipework (old) | 143d | 2026-05-18 A | 2026-11-01 A | RSZone 1Road 25PondsA29040-old | 100% |  |  |  |  | Contract Price Original Scope [66337.9 SAR]; Excavator Operator [41.25 h]; Crane Operator [41.25 h]; Equipment Operator [41.25 h]; Labour [566.36 h]; Ponds - Siphon pipework [3] | 66,337.95 | 66,337.95 | RD25 |
| RSZone 1Road 25PondsA29040-old |  | Zone 1 - Road 25 - Storm Network - Ponds - Backfilling (old) | 141d | 2026-05-20 A | 2026-11-01 A | RSZone 1Road 25PondsA28970-old | 100% |  |  |  |  | Contract Price Original Scope [880960 SAR]; Excavator Operator [15.55 h]; Compactor Operator [15.55 h]; Dump Truck Operator [15.55 h]; Water Truck Operator [15.55 h]; Labour [7521.18 h]; Ponds - Backfilling [27913.8] | 880,959.69 | 880,959.69 | RD25 |
| RSZone 1Road 25PondsA29080-old |  | Zone 1 - Road 25 - Storm Network - Ponds - Riprap (old) | 140d | 2026-05-21 A | 2026-11-01 A | RSZone 1Road 25PondsA29000-old | 100% | 2026-05-21 | 2026-11-02 |  |  | Contract Price Original Scope [104624 SAR]; Excavator Operator [302.84 h]; Dump Truck Operator [302.84 h]; Equipment Operator [302.84 h]; Water Truck Operator [302.84 h]; Labour [893.22 h]; Ponds - Riprap [601.18] | 104,623.66 | 104,623.66 | RD25 |
| RSZone 1Road 25PondsA28980 |  | Zone 1 - Road 25 - Storm Network - Ponds - Disposal Material | 1d | 2026-11-09 | 2026-11-09 | RSZone 1Road 25PondsA28980-old |  |  |  | 0.21d | 0d | Contract Price Original Scope [41927.6 SAR]; Excavator Operator [2.2 h]; Dump Truck Operator [2.2 h]; Equipment Operator [2.2 h]; Labour [357.96 h]; Ponds - Disposal Material [3322.32] | 41,927.58 |  | RD25 |
| RSZone 1Road 25PondsA28970 |  | Zone 1 - Road 25 - Storm Network - Ponds - Excavation | 1d | 2026-11-10 | 2026-11-10 | RSZone 1Road 25PondsA28970-old, RSZone 1Road 25PondsA28980 |  |  |  | 0.21d | 0d | Contract Price Original Scope [261518 SAR]; Excavator Operator [2.53 h]; Dump Truck Operator [2.53 h]; Labour [2232.7 h]; Ponds - Excavation [17059.2] | 261,517.74 |  | RD25 |
| RSZone 1Road 25PondsA29040 |  | Zone 1 - Road 25 - Storm Network - Ponds - Backfilling | 1d | 2026-11-11 | 2026-11-11 | RSZone 1Road 25PondsA29040-old, RSZone 1Road 25PondsA28970 |  |  |  | 0.21d | 0d | Contract Price Original Scope [252107 SAR]; Excavator Operator [4.45 h]; Compactor Operator [4.45 h]; Dump Truck Operator [4.45 h]; Water Truck Operator [4.45 h]; Labour [2152.36 h]; Ponds - Backfilling [7988.19] | 252,107.43 |  | RD25 |
| RSZone 1Road 25PondsA29010 |  | Zone 1 - Road 25 - Storm Network - Ponds - Siphon pipework | 1.38d | 2026-11-12 | 2026-11-14 | RSZone 1Road 25PondsA29010-old, RSZone 1Road 25PondsA29040 |  |  |  | 0.21d | 0d | Contract Price Original Scope [22112.7 SAR]; Excavator Operator [13.75 h]; Crane Operator [13.75 h]; Equipment Operator [13.75 h]; Labour [188.79 h]; Ponds - Siphon pipework [1] | 22,112.65 |  | RD25 |
| RSZone 1Road 25PondsA28990 |  | Zone 1 - Road 25 - Storm Network - Ponds - Filter | 1.4d | 2026-11-14 | 2026-11-15 | RSZone 1Road 25PondsA28990-old, RSZone 1Road 25PondsA29010 |  |  |  | 0.21d | 0d | Contract Price Original Scope [16941.7 SAR]; Equipment Operator [14.02 h]; Labour [144.64 h]; Ponds - Filter [98.37] | 16,941.74 |  | RD25 |
| RSZone 1Road 25PondsA29000 |  | Zone 1 - Road 25 - Storm Network - Ponds - HDPE geomembrane waterproofing | 5.15d | 2026-11-15 | 2026-11-21 | RSZone 1Road 25PondsA29000-old, RSZone 1Road 25PondsA28990 |  |  |  | 0.21d | 0d | Contract Price Original Scope [204902 SAR]; Equipment Operator [51.55 h]; Labour [1749.35 h]; Ponds - HDPE geomembrane waterproofing [4287.55] | 204,902.21 |  | RD25 |
| RSZone 1Road 25PondsA29080 |  | Zone 1 - Road 25 - Storm Network - Ponds - Riprap | 5.26d | 2026-11-21 | 2026-11-28 | RSZone 1Road 25PondsA29080-old, RSZone 1Road 25PondsA29000 |  |  |  | 0.21d | 0d | Contract Price Original Scope [34948.4 SAR]; Excavator Operator [101.16 h]; Dump Truck Operator [101.16 h]; Equipment Operator [101.16 h]; Water Truck Operator [101.16 h]; Labour [298.37 h]; Ponds - Riprap [200.82] | 34,948.4 |  | RD25 |
| RSZone 1Road 25PondsA29070 |  | Zone 1 - Road 25 - Storm Network - Ponds - Entrance Rood | 20d | 2026-11-28 | 2026-12-21 | RSZone 1Road 25PondsA29080, RSZone 1Road 25PondsA28970, RSZone 1Road 25PondsA28980, RSZone 1Road 25PondsA29010, RSZone 1Road 25PondsA29040 |  |  |  | 0.21d | 0d | Contract Price Original Scope [232182 SAR]; Grader Operator [37 h]; Paver Operator [37 h]; Compactor Operator [37 h]; Dozer Operator [37 h]; Water Truck Operator [37 h]; Labour [1982.25 h]; Ponds - Entrance Rood [4087] | 232,182.47 |  | RD25 |
|  | 2 | **Potable Water Network** |  | 2025-11-04 | 2026-12-30 |  |  |  |  |  |  |  |  |  |  |
|  | 3 | **Potable Pipes 250 MM** |  | 2025-11-04 | 2026-11-12 |  |  |  |  |  |  |  |  |  |  |
| RSZone 1Road 25Potable NetworkA54980 |  | Zone 1 - Road 25 - Potable Water Network - Potable Pipes 250 MM - Excavation | 6d | 2025-11-04 A | 2025-11-10 A | RSZone 1Road 24Potable NetworkA89160 | 100% |  |  |  |  | Contract Price Original Scope [1230.78 SAR]; Excavator Operator [30 h]; Dump Truck Operator [30 h]; Labour [10.51 h]; Potable Pipes 250 MM [40] | 1,230.78 | 1,230.78 | RD25 |
| RSZone 1Road 25Potable NetworkA54990 |  | Zone 1 - Road 25 - Potable Water Network - Potable Pipes 250 MM - Installation | 2d | 2025-11-11 A | 2025-11-12 A | RSZone 1Road 25Potable NetworkA54980 | 100% |  |  |  |  | Contract Price Original Scope [8615.44 SAR]; Labour [73.55 h]; Potable Pipes 250 MM [40] | 8,615.44 | 8,615.44 | RD25 |
| RSZone 1Road 25Potable NetworkA55000 |  | Zone 1 - Road 25 - Potable Water Network - Potable Pipes 250 MM - Test | 2d | 2026-11-09 | 2026-11-10 | RSZone 1Road 25Potable NetworkA54990 |  |  |  | 97.4d | 0d | Contract Price Original Scope [1230.78 SAR]; Pump Operator [20 h]; Equipment Operator [20 h]; Labour [10.51 h]; Potable Pipes 250 MM [40] | 1,230.78 |  | RD25 |
| RSZone 1Road 25Potable NetworkA55010 |  | Zone 1 - Road 25 - Potable Water Network - Potable Pipes 250 MM - Backfilling | 2d | 2026-11-11 | 2026-11-12 | RSZone 1Road 25Potable NetworkA55000 |  |  |  | 97.4d | 97.2d | Contract Price Original Scope [1230.78 SAR]; Excavator Operator [20 h]; Compactor Operator [20 h]; Dump Truck Operator [20 h]; Water Truck Operator [20 h]; Labour [10.51 h]; Potable Pipes 250 MM [40] | 1,230.78 |  | RD25 |

| ID | WBS | Activity | Duration | Start | Finish | Predecessors | Complete | Planned start | Planned finish | Total float | Free float | Resources | Cost | Actual cost | MODON |
| --- | --- | --- | --- | --- | --- | --- | --- | --- | --- | --- | --- | --- | --- | --- | --- |
|  | 4 | **Potable Pipes 355 MM** |  | 2025-12-01 | 2026-11-14 |  |  |  |  |  |  |  |  |  |  |
| RSZone 1Road 25Potable NetworkA55100 |  | Zone 1 - Road 25 - Potable Water Network - Potable Pipes 355 MM - Excavation | 3.9d | 2025-12-01 A | 2025-12-04 A | RSZone 1Road 25Potable NetworkA54990 | 100% |  |  |  |  | Contract Price Original Scope [16845.2 SAR]; Excavator Operator [30 h]; Dump Truck Operator [30 h]; Labour [143.82 h]; Potable Pipes 355 MM [162] | 16,845.2 | 16,845.2 | RD25 |
| RSZone 1Road 25Potable NetworkA55110-old |  | Zone 1 - Road 25 - Potable Water Network - Potable Pipes 355 MM - Installation (old) | 120d | 2026-06-14 A | 2026-11-01 A | RSZone 1Road 25Potable NetworkA55100 | 100% |  |  |  |  | Contract Price Original Scope [101867 SAR]; Labour [869.68 h]; Potable Pipes 355 MM [139.95] | 101,866.64 | 101,866.64 | RD25 |
| RSZone 1Road 25Potable NetworkA55110 |  | Zone 1 - Road 25 - Potable Water Network - Potable Pipes 355 MM - Installation | 1d | 2026-11-09 | 2026-11-09 | RSZone 1Road 25Potable NetworkA55110-old |  |  |  | 96.4d | 0d | Contract Price Original Scope [16049.7 SAR]; Labour [137.02 h]; Potable Pipes 355 MM [22.05] | 16,049.73 |  | RD25 |
| RSZone 1Road 25Potable NetworkA55120 |  | Zone 1 - Road 25 - Potable Water Network - Potable Pipes 355 MM - Test | 2d | 2026-11-10 | 2026-11-11 | RSZone 1Road 25Potable NetworkA55110 |  |  |  | 96.4d | 0d | Contract Price Original Scope [16845.2 SAR]; Pump Operator [20 h]; Equipment Operator [20 h]; Labour [143.82 h]; Potable Pipes 355 MM [162] | 16,845.2 |  | RD25 |
| RSZone 1Road 25Potable NetworkA55130 |  | Zone 1 - Road 25 - Potable Water Network - Potable Pipes 355 MM - Backfilling | 2d | 2026-11-12 | 2026-11-14 | RSZone 1Road 25Potable NetworkA55120 |  |  |  | 96.4d | 96.2d | Contract Price Original Scope [16845.2 SAR]; Excavator Operator [20 h]; Compactor Operator [20 h]; Dump Truck Operator [20 h]; Water Truck Operator [20 h]; Labour [143.82 h]; Potable Pipes 355 MM [162] | 16,845.2 |  | RD25 |
|  | 2 | **Buried Valves** |  | 2026-06-21 | 2026-11-25 |  |  |  |  |  |  |  |  |  |  |
| RSZone 1Road 25Potable NetworkA55970-old |  | Zone 1 - Road 25 - Potable Water Network - Buried Valves - Excavation (old) | 114d | 2026-06-21 A | 2026-11-01 A | RSZone 1Road 25Potable NetworkA55520-old | 100% |  |  |  |  | Contract Price Original Scope [4645.5 SAR]; Excavator Operator [24.17 h]; Dump Truck Operator [24.17 h]; Labour [39.66 h]; Buried Valves [29] | 4,645.5 | 4,645.5 | RD25 |
| RSZone 1Road 25Potable NetworkA55980-old |  | Zone 1 - Road 25 - Potable Water Network - Buried Valves - Installation (old) | 113d | 2026-06-22 A | 2026-11-01 A | RSZone 1Road 25Potable NetworkA55970-old | 100% |  |  |  |  | Contract Price Original Scope [60391.5 SAR]; Labour [515.59 h]; Buried Valves [29] | 60,391.54 | 60,391.54 | RD25 |
| RSZone 1Road 25Potable NetworkA56000-old |  | Zone 1 - Road 25 - Potable Water Network - Buried Valves - Test (old) | 112d | 2026-06-23 A | 2026-11-01 A | RSZone 1Road 25Potable NetworkA55980-old | 100% |  |  |  |  | Contract Price Original Scope [8323.46 SAR]; Pump Operator [7.22 h]; Equipment Operator [7.22 h]; Labour [71.06 h]; Buried Valves [12.99] | 8,323.46 | 8,323.46 | RD25 |
| RSZone 1Road 25Potable NetworkA55970 |  | Zone 1 - Road 25 - Potable Water Network - Buried Valves - Excavation | 1d | 2026-11-15 | 2026-11-16 | RSZone 1Road 25Potable NetworkA55970-old, RSZone 1Road 25Potable NetworkA55520 |  |  |  | 73.49d | 0d | Contract Price Original Scope [1121.33 SAR]; Excavator Operator [5.83 h]; Dump Truck Operator [5.83 h]; Labour [9.57 h]; Buried Valves [7] | 1,121.33 |  | RD25 |
| RSZone 1Road 25Potable NetworkA55980 |  | Zone 1 - Road 25 - Potable Water Network - Buried Valves - Installation | 1d | 2026-11-16 | 2026-11-17 | RSZone 1Road 25Potable NetworkA55980-old, RSZone 1Road 25Potable NetworkA55970 |  |  |  | 87.21d | 0d | Contract Price Original Scope [14577.3 SAR]; Labour [124.45 h]; Buried Valves [7] | 14,577.27 |  | RD25 |
| RSZone 1Road 25Potable NetworkA56000 |  | Zone 1 - Road 25 - Potable Water Network - Buried Valves - Test | 1.28d | 2026-11-17 | 2026-11-19 | RSZone 1Road 25Potable NetworkA56000-old, RSZone 1Road 25Potable NetworkA55980 |  |  |  | 87.21d | 0d | Contract Price Original Scope [14743.9 SAR]; Pump Operator [12.78 h]; Equipment Operator [12.78 h]; Labour [125.88 h]; Buried Valves [23.01] | 14,743.87 |  | RD25 |
| RSZone 1Road 25Potable NetworkA55990 |  | Zone 1 - Road 25 - Potable Water Network - Buried Valves - Surface Box | 3d | 2026-11-19 | 2026-11-23 | RSZone 1Road 25Potable NetworkA56000, RSZone 1Road 25Potable NetworkA55970, RSZone 1Road 25Potable NetworkA55980 |  |  |  | 87.21d | 0d | Labour; Buried Valves [36] |  |  | RD25 |
| RSZone 1Road 25Potable NetworkA56010 |  | Zone 1 - Road 25 - Potable Water Network - Buried Valves - Backfilling | 2d | 2026-11-23 | 2026-11-25 | RSZone 1Road 25Potable NetworkA55990, RSZone 1Road 25Potable NetworkA55520 |  |  |  | 87.21d | 87.01d | Contract Price Original Scope [11533.7 SAR]; Excavator Operator [20 h]; Compactor Operator [20 h]; Dump Truck Operator [20 h]; Water Truck Operator [20 h]; Labour [98.47 h]; Buried Valves [36] | 11,533.66 |  | RD25 |
|  | 5 | **Potable Pipes 560 MM** |  | 2026-06-10 | 2026-11-14 |  |  |  |  |  |  |  |  |  |  |
| RSZone 1Road 25Potable NetworkA55380-old |  | Zone 1 - Road 25 - Potable Water Network - Potable Pipes 560 MM - Excavation (old) | 123d | 2026-06-10 A | 2026-11-01 A | RSZone 1Road 25Potable NetworkA55100 | 100% |  |  |  |  | Contract Price Original Scope [29604.2 SAR]; Excavator Operator [22.48 h]; Dump Truck Operator [22.48 h]; Labour [252.75 h]; Potable Pipes 560 MM [173.12] | 29,604.19 | 29,604.19 | RD25 |
| RSZone 1Road 25Potable NetworkA55390-old |  | Zone 1 - Road 25 - Potable Water Network - Potable Pipes 560 MM - Installation (old) | 122d | 2026-06-11 A | 2026-11-01 A | RSZone 1Road 25Potable NetworkA55380-old | 100% | 2026-06-11 | 2026-11-02 |  |  | Contract Price Original Scope [207229 SAR]; Labour [1769.22 h]; Potable Pipes 560 MM [173.12] | 207,229.34 | 207,229.34 | RD25 |
| RSZone 1Road 25Potable NetworkA55400-old |  | Zone 1 - Road 25 - Potable Water Network - Potable Pipes 560 MM - Test (old) | 119d | 2026-06-15 A | 2026-11-01 A | RSZone 1Road 25Potable NetworkA55390-old | 100% |  |  |  |  | Contract Price Original Scope [15701.9 SAR]; Pump Operator [7.95 h]; Equipment Operator [7.95 h]; Labour [134.05 h]; Potable Pipes 560 MM [91.82] | 15,701.85 | 15,701.85 | RD25 |
| RSZone 1Road 25Potable NetworkA55410-old |  | Zone 1 - Road 25 - Potable Water Network - Potable Pipes 560 MM - Backfilling (old) | 118d | 2026-06-16 A | 2026-11-01 A | RSZone 1Road 25Potable NetworkA55400-old | 100% |  |  |  |  | Contract Price Original Scope [15701.9 SAR]; Excavator Operator [7.95 h]; Compactor Operator [7.95 h]; Dump Truck Operator [7.95 h]; Water Truck Operator [7.95 h]; Labour [134.05 h]; Potable Pipes 560 MM [91.82] | 15,701.85 | 15,701.85 | RD25 |
| RSZone 1Road 25Potable NetworkA55380 |  | Zone 1 - Road 25 - Potable Water Network - Potable Pipes 560 MM - Excavation | 1d | 2026-11-09 | 2026-11-09 | RSZone 1Road 25Potable NetworkA55380-old |  |  |  | 73.49d | 0d | Contract Price Original Scope [9897.32 SAR]; Excavator Operator [7.52 h]; Dump Truck Operator [7.52 h]; Labour [84.5 h]; Potable Pipes 560 MM [57.88] | 9,897.32 |  | RD25 |
| RSZone 1Road 25Potable NetworkA55390 |  | Zone 1 - Road 25 - Potable Water Network - Potable Pipes 560 MM - Installation | 1d | 2026-11-10 | 2026-11-10 | RSZone 1Road 25Potable NetworkA55390-old, RSZone 1Road 25Potable NetworkA55380 |  |  |  | 73.49d | 0d | Contract Price Original Scope [69281.3 SAR]; Labour [591.49 h]; Potable Pipes 560 MM [57.88] | 69,281.27 |  | RD25 |
| RSZone 1Road 25Potable NetworkA55400 |  | Zone 1 - Road 25 - Potable Water Network - Potable Pipes 560 MM - Test | 1.21d | 2026-11-11 | 2026-11-12 | RSZone 1Road 25Potable NetworkA55400-old, RSZone 1Road 25Potable NetworkA55390 |  |  |  | 73.49d | 0d | Contract Price Original Scope [23799.7 SAR]; Pump Operator [12.05 h]; Equipment Operator [12.05 h]; Labour [203.19 h]; Potable Pipes 560 MM [139.18] | 23,799.66 |  | RD25 |
| RSZone 1Road 25Potable NetworkA55410 |  | Zone 1 - Road 25 - Potable Water Network - Potable Pipes 560 MM - Backfilling | 1.21d | 2026-11-12 | 2026-11-14 | RSZone 1Road 25Potable NetworkA55410-old, RSZone 1Road 25Potable NetworkA55400 |  |  |  | 73.49d | 0d | Contract Price Original Scope [23799.7 SAR]; Excavator Operator [12.05 h]; Compactor Operator [12.05 h]; Dump Truck Operator [12.05 h]; Water Truck Operator [12.05 h]; Labour [203.19 h]; Potable Pipes 560 MM [139.18] | 23,799.66 |  | RD25 |

| ID | WBS | Activity | Duration | Start | Finish | Predecessors | Complete | Planned start | Planned finish | Total float | Free float | Resources | Cost | Actual cost | MODON |
| --- | --- | --- | --- | --- | --- | --- | --- | --- | --- | --- | --- | --- | --- | --- | --- |
|  | 6 | **Fittings** |  | 2026-06-14 | 2026-11-15 |  |  |  |  |  |  |  |  |  |  |
|  | 5 | **End Cap** |  | 2026-06-14 | 2026-11-15 |  |  |  |  |  |  |  |  |  |  |
| RSZone 1Road 25Potable NetworkA55520-old |  | Zone 1 - Road 25 - Potable Water Network - End Cap - Installation (old) | 120d | 2026-06-14 A | 2026-11-01 A | RSZone 1Road 25Potable NetworkA55410-old | 100% |  |  |  |  | Contract Price Original Scope [730.98 SAR]; Labour [6.24 h]; Fittings - End Caps (all sizes) [1] | 730.98 | 730.98 | RD25 |
| RSZone 1Road 25Potable NetworkA55520 |  | Zone 1 - Road 25 - Potable Water Network - End Cap - Installation | 1.5d | 2026-11-14 | 2026-11-15 | RSZone 1Road 25Potable NetworkA55520-old, RSZone 1Road 25Potable NetworkA55410 |  |  |  | 73.49d | 0d | Contract Price Original Scope [730.98 SAR]; Labour [6.24 h]; Fittings - End Caps (all sizes) [1] | 730.98 |  | RD25 |
|  | 10 | **Flow Meter Valves** |  | 2026-06-23 | 2026-12-10 |  |  |  |  |  |  |  |  |  |  |
| RSZone 1Road 25Potable NetworkA56970-old |  | Zone 1 - Road 25 - Potable Water Network - Flow Meter Valves - Excavation (old) | 112d | 2026-06-23 A | 2026-11-01 A | RSZone 1Road 25Potable NetworkA55970-old | 100% |  |  |  |  | Contract Price Original Scope [3759.56 SAR]; Labour [32.1 h]; Flow Meter Chambers [1] | 3,759.56 | 3,759.56 | RD25 |
| RSZone 1Road 25Potable NetworkA56980-old |  | Zone 1 - Road 25 - Potable Water Network - Flow Meter Valves - Footings (old) | 110d | 2026-06-25 A | 2026-11-01 A | RSZone 1Road 25Potable NetworkA56970-old | 100% | 2026-06-25 | 2026-11-02 |  |  | Contract Price Original Scope [11278.7 SAR]; Labour [96.29 h]; Flow Meter Chambers [1] | 11,278.69 | 11,278.69 | RD25 |
| RSZone 1Road 25Potable NetworkA56990-old |  | Zone 1 - Road 25 - Potable Water Network - Flow Meter Valves - Walls (old) | 107d | 2026-06-29 A | 2026-11-01 A | RSZone 1Road 25Potable NetworkA56980-old | 100% |  |  |  |  | Contract Price Original Scope [15038.2 SAR]; Labour [128.39 h]; Flow Meter Chambers [1] | 15,038.25 | 15,038.25 | RD25 |
| RSZone 1Road 25Potable NetworkA57000-old |  | Zone 1 - Road 25 - Potable Water Network - Flow Meter Valves - Slab (old) | 105d | 2026-07-01 A | 2026-11-01 A | RSZone 1Road 25Potable NetworkA56990-old | 100% |  |  |  |  | Contract Price Original Scope [26316.9 SAR]; Labour [224.68 h]; Flow Meter Chambers [1] | 26,316.93 | 26,316.93 | RD25 |
| RSZone 1Road 25Potable NetworkA56970 |  | Zone 1 - Road 25 - Potable Water Network - Flow Meter Valves - Excavation | 1.5d | 2026-11-16 | 2026-11-18 | RSZone 1Road 25Potable NetworkA56970-old, RSZone 1Road 25Potable NetworkA55970 |  |  |  | 73.49d | 0d | Contract Price Original Scope [3759.56 SAR]; Labour [32.1 h]; Flow Meter Chambers [1] | 3,759.56 |  | RD25 |
| RSZone 1Road 25Potable NetworkA56980 |  | Zone 1 - Road 25 - Potable Water Network - Flow Meter Valves - Footings | 1.5d | 2026-11-18 | 2026-11-19 | RSZone 1Road 25Potable NetworkA56980-old, RSZone 1Road 25Potable NetworkA56970 |  |  |  | 73.49d | 0d | Contract Price Original Scope [11278.7 SAR]; Labour [96.29 h]; Flow Meter Chambers [1] | 11,278.69 |  | RD25 |
| RSZone 1Road 25Potable NetworkA56990 |  | Zone 1 - Road 25 - Potable Water Network - Flow Meter Valves - Walls | 1.5d | 2026-11-19 | 2026-11-22 | RSZone 1Road 25Potable NetworkA56990-old, RSZone 1Road 25Potable NetworkA56980 |  |  |  | 73.49d | 0d | Contract Price Original Scope [15038.2 SAR]; Labour [128.39 h]; Flow Meter Chambers [1] | 15,038.25 |  | RD25 |
| RSZone 1Road 25Potable NetworkA57000 |  | Zone 1 - Road 25 - Potable Water Network - Flow Meter Valves - Slab | 1.5d | 2026-11-22 | 2026-11-23 | RSZone 1Road 25Potable NetworkA57000-old, RSZone 1Road 25Potable NetworkA56990 |  |  |  | 73.49d | 0d | Contract Price Original Scope [26316.9 SAR]; Labour [224.68 h]; Flow Meter Chambers [1] | 26,316.93 |  | RD25 |
| RSZone 1Road 25Potable NetworkA89870 |  | Zone 1 - Road 25 - Potable Water Network - Flow Meter Valves - Internal Isolation | 3d | 2026-11-23 | 2026-11-26 | RSZone 1Road 25Potable NetworkA57000, RSZone 1Road 25Potable NetworkA56970, RSZone 1Road 25Potable NetworkA56980, RSZone 1Road 25Potable NetworkA56990 |  |  |  | 73.49d | 0d | Contract Price Original Scope [11278.7 SAR]; Labour [96.29 h]; Flow Meter Chambers [3] | 11,278.69 |  | RD25 |
| RSZone 1Road 25Potable NetworkA57010 |  | Zone 1 - Road 25 - Potable Water Network - Flow Meter Valves - Valve Installation | 4d | 2026-11-26 | 2026-12-01 | RSZone 1Road 25Potable NetworkA89870 |  |  |  | 73.49d | 0d | Contract Price Original Scope [14653 SAR]; Labour [125.1 h]; Flow Meter Chambers [3] | 14,653 |  | RD25 |
| RSZone 1Road 25Potable NetworkA89860 |  | Zone 1 - Road 25 - Potable Water Network - Flow Meter Valves - D.I Cover | 3d | 2026-12-01 | 2026-12-05 | RSZone 1Road 25Potable NetworkA57010 |  |  |  | 73.49d | 0d | Contract Price Original Scope [22557.4 SAR]; Labour [192.58 h]; Flow Meter Chambers [3] | 22,557.37 |  | RD25 |
| RSZone 1Road 25Potable NetworkA89880 |  | Zone 1 - Road 25 - Potable Water Network - Flow Meter Valves - External Isolation | 3d | 2026-12-05 | 2026-12-08 | RSZone 1Road 25Potable NetworkA89860 |  |  |  | 73.49d | 0d | Contract Price Original Scope [7519.12 SAR]; Labour [64.19 h]; Flow Meter Chambers [2] | 7,519.12 |  | RD25 |
| RSZone 1Road 25Potable NetworkA89890 |  | Zone 1 - Road 25 - Potable Water Network - Flow Meter Valves - Backfilling | 2d | 2026-12-08 | 2026-12-10 | RSZone 1Road 25Potable NetworkA89880 |  |  |  | 73.49d | 73.29d | Contract Price Original Scope [11278.7 SAR]; Excavator Operator [20 h]; Compactor Operator [20 h]; Dump Truck Operator [20 h]; Water Truck Operator [20 h]; Labour [96.29 h]; Flow Meter Chambers [3] | 11,278.69 |  | RD25 |
|  | 8 | **Washout Valves** |  | 2026-12-03 | 2026-12-30 |  |  |  |  |  |  |  |  |  |  |
|  | 4 | **Washout Valves 355 MM** |  | 2026-12-03 | 2026-12-13 |  |  |  |  |  |  |  |  |  |  |
| RSZone 1Road 25Potable NetworkA56630 |  | Zone 1 - Road 25 - Potable Water Network - Washout Valves 355 MM - Installation | 3d | 2026-12-03 | 2026-12-07 | RSZone 1Road 24Potable NetworkA56580 |  |  |  | 0.2d | 0d | Labour; Washout / Air / other Valves [4] |  |  | RD25 |
| RSZone 1Road 25Potable NetworkA56640 |  | Zone 1 - Road 25 - Potable Water Network - Washout Valves 355 MM - Surface Box | 3d | 2026-12-07 | 2026-12-10 | RSZone 1Road 25Potable NetworkA56630 |  |  |  | 72.2d | 0d | Labour; Washout / Air / other Valves [4] |  |  | RD25 |
| RSZone 1Road 25Potable NetworkA56650 |  | Zone 1 - Road 25 - Potable Water Network - Washout Valves 355 MM - Test | 2d | 2026-12-10 | 2026-12-13 | RSZone 1Road 25Potable NetworkA56640 |  |  |  | 72.2d | 72d | Pump Operator [20 h]; Equipment Operator [20 h]; Labour; Washout / Air / other Valves [4] |  |  | RD25 |
|  | 1 | **Washout Valves 560 MM** |  | 2026-12-07 | 2026-12-16 |  |  |  |  |  |  |  |  |  |  |
| RSZone 1Road 25Potable NetworkA89900 |  | Zone 1 - Road 25 - Potable Water Network - Washout Valves 560 MM - Installation | 3d | 2026-12-07 | 2026-12-10 | RSZone 1Road 25Potable NetworkA56630 |  |  |  | 0.2d | 0d | Labour; Washout / Air / other Valves [3] |  |  | RD25 |
| RSZone 1Road 25Potable NetworkA89910 |  | Zone 1 - Road 25 - Potable Water Network - Washout Valves 560 MM - Surface Box | 3d | 2026-12-10 | 2026-12-14 | RSZone 1Road 25Potable NetworkA89900 |  |  |  | 69.2d | 0d | Labour; Washout / Air / other Valves [3] |  |  | RD25 |
| RSZone 1Road 25Potable NetworkA89920 |  | Zone 1 - Road 25 - Potable Water Network - Washout Valves 560 MM - Test | 2d | 2026-12-14 | 2026-12-16 | RSZone 1Road 25Potable NetworkA89910 |  |  |  | 69.2d | 69d | Pump Operator [20 h]; Equipment Operator [20 h]; Labour; Washout / Air / other Valves [3] |  |  | RD25 |

| ID | WBS | Activity | Duration | Start | Finish | Predecessors | Complete | Planned start | Planned finish | Total float | Free float | Resources | Cost | Actual cost | MODON |
| --- | --- | --- | --- | --- | --- | --- | --- | --- | --- | --- | --- | --- | --- | --- | --- |
|  | 2 | **Washout Valves 710 MM** |  | 2026-12-10 | 2026-12-20 |  |  |  |  |  |  |  |  |  |  |
| RSZone 1Road 25Potable NetworkA89930 |  | Zone 1 - Road 25 - Potable Water Network - Washout Valves 710 MM - Installation | 3d | 2026-12-10 | 2026-12-14 | RSZone 1Road 25Potable NetworkA89900 |  |  |  | 0.2d | 0d | Labour; Washout / Air / other Valves [2] |  |  | RD25 |
| RSZone 1Road 25Potable NetworkA89940 |  | Zone 1 - Road 25 - Potable Water Network - Washout Valves 710 MM - Surface Box | 3d | 2026-12-14 | 2026-12-17 | RSZone 1Road 25Potable NetworkA89930 |  |  |  | 66.2d | 0d | Labour; Washout / Air / other Valves [2] |  |  | RD25 |
| RSZone 1Road 25Potable NetworkA89950 |  | Zone 1 - Road 25 - Potable Water Network - Washout Valves 710 MM - Test | 2d | 2026-12-17 | 2026-12-20 | RSZone 1Road 25Potable NetworkA89940 |  |  |  | 66.2d | 66d | Pump Operator [20 h]; Equipment Operator [20 h]; Labour; Washout / Air / other Valves [2] |  |  | RD25 |
|  | 3 | **Butterfly Valves 355 MM** |  | 2026-12-14 | 2026-12-23 |  |  |  |  |  |  |  |  |  |  |
| RSZone 1Road 25Potable NetworkA89960 |  | Zone 1 - Road 25 - Potable Water Network - Butterfly Valves 355 MM - Installation | 3d | 2026-12-14 | 2026-12-17 | RSZone 1Road 25Potable NetworkA89930 |  |  |  | 0.2d | 0d | Contract Price Original Scope [168612 SAR]; Labour [1439.52 h]; Butterfly Valves [30] | 168,611.63 |  | RD25 |
| RSZone 1Road 25Potable NetworkA89970 |  | Zone 1 - Road 25 - Potable Water Network - Butterfly Valves 355 MM - Surface Box | 3d | 2026-12-17 | 2026-12-21 | RSZone 1Road 25Potable NetworkA89960 |  |  |  | 63.2d | 0d | Labour; Butterfly Valves [30] |  |  | RD25 |
| RSZone 1Road 25Potable NetworkA89980 |  | Zone 1 - Road 25 - Potable Water Network - Butterfly Valves 355 MM - Test | 2d | 2026-12-21 | 2026-12-23 | RSZone 1Road 25Potable NetworkA89970 |  |  |  | 63.2d | 63d | Contract Price Original Scope [72262.1 SAR]; Pump Operator [20 h]; Equipment Operator [20 h]; Labour [616.94 h]; Butterfly Valves [30] | 72,262.13 |  | RD25 |
|  | 5 | **Butterfly Valves 560 MM** |  | 2026-12-17 | 2026-12-27 |  |  |  |  |  |  |  |  |  |  |
| RSZone 1Road 25Potable NetworkA89990 |  | Zone 1 - Road 25 - Potable Water Network - Butterfly Valves 560 MM - Installation | 3d | 2026-12-17 | 2026-12-21 | RSZone 1Road 25Potable NetworkA89960 |  |  |  | 0.2d | 0d | Contract Price Original Scope [89926.2 SAR]; Labour [767.74 h]; Butterfly Valves [16] | 89,926.2 |  | RD25 |
| RSZone 1Road 25Potable NetworkA90000 |  | Zone 1 - Road 25 - Potable Water Network - Butterfly Valves 560 MM - Surface Box | 3d | 2026-12-21 | 2026-12-24 | RSZone 1Road 25Potable NetworkA89990 |  |  |  | 60.2d | 0d | Labour; Butterfly Valves [16] |  |  | RD25 |
| RSZone 1Road 25Potable NetworkA90010 |  | Zone 1 - Road 25 - Potable Water Network - Butterfly Valves 560 MM - Test | 2d | 2026-12-24 | 2026-12-27 | RSZone 1Road 25Potable NetworkA90000 |  |  |  | 60.2d | 60d | Contract Price Original Scope [38539.8 SAR]; Pump Operator [20 h]; Equipment Operator [20 h]; Labour [329.03 h]; Butterfly Valves [16] | 38,539.8 |  | RD25 |
|  | 6 | **Butterfly Valves 710 MM** |  | 2026-12-21 | 2026-12-30 |  |  |  |  |  |  |  |  |  |  |
| RSZone 1Road 25Potable NetworkA90020 |  | Zone 1 - Road 25 - Potable Water Network - Butterfly Valves 710 MM - Installation | 3d | 2026-12-21 | 2026-12-24 | RSZone 1Road 25Potable NetworkA89990 |  |  |  | 0.2d | 0d | Contract Price Original Scope [39342.7 SAR]; Labour [335.89 h]; Butterfly Valves [7] | 39,342.71 |  | RD25 |
| RSZone 1Road 25Potable NetworkA90030 |  | Zone 1 - Road 25 - Potable Water Network - Butterfly Valves 710 MM - Surface Box | 3d | 2026-12-24 | 2026-12-28 | RSZone 1Road 25Potable NetworkA90020 |  |  |  | 0.2d | 0d | Labour; Butterfly Valves [7] |  |  | RD25 |
| RSZone 1Road 25Potable NetworkA90040 |  | Zone 1 - Road 25 - Potable Water Network - Butterfly Valves 710 MM - Test | 2d | 2026-12-28 | 2026-12-30 | RSZone 1Road 25Potable NetworkA90030 |  |  |  | 0.2d | 0d | Contract Price Original Scope [16861.2 SAR]; Pump Operator [20 h]; Equipment Operator [20 h]; Labour [143.95 h]; Butterfly Valves [7] | 16,861.16 |  | RD25 |
|  | 11 | **Isolation Valve Chambers** |  | 2026-01-18 | 2026-11-25 |  |  |  |  |  |  |  |  |  |  |
| RSZone 1Road 25Potable NetworkA57180 |  | Zone 1 - Road 25 - Potable Water Network - Isolation Valve Chambers - Excavation | 3d | 2026-01-18 A | 2026-01-20 A | RSZone 1Road 25Potable NetworkA55100 | 100% |  |  |  |  | Contract Price Original Scope [25699.7 SAR]; Labour [219.41 h]; Isolation Valve Chambers [18] | 25,699.67 | 25,699.67 | RD25 |
| RSZone 1Road 25Potable NetworkA57190-old |  | Zone 1 - Road 25 - Potable Water Network - Isolation Valve Chambers - Footings (old) | 111d | 2026-06-24 A | 2026-11-01 A | RSZone 1Road 25Potable NetworkA57180 | 100% |  |  |  |  | Contract Price Original Scope [47116.1 SAR]; Labour [402.25 h]; Isolation Valve Chambers [11] | 47,116.07 | 47,116.07 | RD25 |
| RSZone 1Road 25Potable NetworkA57200-old |  | Zone 1 - Road 25 - Potable Water Network - Isolation Valve Chambers - Walls (old) | 110d | 2026-06-25 A | 2026-11-01 A | RSZone 1Road 25Potable NetworkA57190-old | 100% | 2026-06-25 | 2026-11-02 |  |  | Contract Price Original Scope [62821.4 SAR]; Labour [536.34 h]; Isolation Valve Chambers [11] | 62,821.43 | 62,821.43 | RD25 |
| RSZone 1Road 25Potable NetworkA57210-old |  | Zone 1 - Road 25 - Potable Water Network - Isolation Valve Chambers - Slab (old) | 108d | 2026-06-28 A | 2026-11-01 A | RSZone 1Road 25Potable NetworkA57240-old | 100% |  |  |  |  | Contract Price Original Scope [79887.9 SAR]; Labour [682.04 h]; Isolation Valve Chambers [7.99] | 79,887.91 | 79,887.91 | RD25 |
| RSZone 1Road 25Potable NetworkA57240-old |  | Zone 1 - Road 25 - Potable Water Network - Isolation Valve Chambers - External Isolation (old) | 106d | 2026-06-30 A | 2026-11-01 A | RSZone 1Road 25Potable NetworkA57200-old | 100% |  |  |  |  | Contract Price Original Scope [9994.32 SAR]; Labour [85.33 h]; Isolation Valve Chambers [7] | 9,994.32 | 9,994.32 | RD25 |
| RSZone 1Road 25Potable NetworkA57190 |  | Zone 1 - Road 25 - Potable Water Network - Isolation Valve Chambers - Footings | 1.17d | 2026-11-09 | 2026-11-10 | RSZone 1Road 25Potable NetworkA57190-old |  |  |  | 86.78d | 0d | Contract Price Original Scope [29983 SAR]; Labour [255.98 h]; Isolation Valve Chambers [7] | 29,982.95 |  | RD25 |
| RSZone 1Road 25Potable NetworkA57200 |  | Zone 1 - Road 25 - Potable Water Network - Isolation Valve Chambers - Walls | 1.17d | 2026-11-10 | 2026-11-11 | RSZone 1Road 25Potable NetworkA57200-old, RSZone 1Road 25Potable NetworkA57190 |  |  |  | 86.78d | 0d | Contract Price Original Scope [39977.3 SAR]; Labour [341.31 h]; Isolation Valve Chambers [7] | 39,977.27 |  | RD25 |
| RSZone 1Road 25Potable NetworkA57240 |  | Zone 1 - Road 25 - Potable Water Network - Isolation Valve Chambers - External Isolation | 1.83d | 2026-11-11 | 2026-11-14 | RSZone 1Road 25Potable NetworkA57240-old, RSZone 1Road 25Potable NetworkA57200 |  |  |  | 86.78d | 0d | Contract Price Original Scope [15705.4 SAR]; Labour [134.08 h]; Isolation Valve Chambers [11] | 15,705.36 |  | RD25 |
| RSZone 1Road 25Potable NetworkA57210 |  | Zone 1 - Road 25 - Potable Water Network - Isolation Valve Chambers - Slab | 2.46d | 2026-11-14 | 2026-11-16 | RSZone 1Road 25Potable NetworkA57210-old, RSZone 1Road 25Potable NetworkA57240 |  |  |  | 86.78d | 0d | Contract Price Original Scope [359862 SAR]; Labour [3072.32 h]; Isolation Valve Chambers [36.01] | 359,862.08 |  | RD25 |
| RSZone 1Road 25Potable NetworkA57220 |  | Zone 1 - Road 25 - Potable Water Network - Isolation Valve Chambers - D.I Cover | 3d | 2026-11-16 | 2026-11-19 | RSZone 1Road 25Potable NetworkA57210, RSZone 1Road 25Potable NetworkA57190, RSZone 1Road 25Potable NetworkA57200, RSZone 1Road 25Potable NetworkA57240 |  |  |  | 86.78d | 0d | Contract Price Original Scope [102799 SAR]; Labour [877.64 h]; Isolation Valve Chambers [36] | 102,798.7 |  | RD25 |
| RSZone 1Road 25Potable NetworkA57230 |  | Zone 1 - Road 25 - Potable Water Network - Isolation Valve Chambers - Internal Isolation | 3d | 2026-11-19 | 2026-11-23 | RSZone 1Road 25Potable NetworkA57220 |  |  |  | 86.78d | 0d | Contract Price Original Scope [51399.3 SAR]; Labour [438.82 h]; Isolation Valve Chambers [36] | 51,399.35 |  | RD25 |
| RSZone 1Road 25Potable NetworkA57250 |  | Zone 1 - Road 25 - Potable Water Network - Isolation Valve Chambers - Backfilling | 2d | 2026-11-23 | 2026-11-25 | RSZone 1Road 25Potable NetworkA57230 |  |  |  | 86.78d | 86.58d | Contract Price Original Scope [51399.3 SAR]; Excavator Operator [20 h]; Compactor Operator [20 h]; Dump Truck Operator [20 h]; Water Truck Operator [20 h]; Labour [438.82 h]; Isolation Valve Chambers [36] | 51,399.35 |  | RD25 |

| ID | WBS | Activity | Duration | Start | Finish | Predecessors | Complete | Planned start | Planned finish | Total float | Free float | Resources | Cost | Actual cost | MODON |
| --- | --- | --- | --- | --- | --- | --- | --- | --- | --- | --- | --- | --- | --- | --- | --- |
|  | 12 | **Washout Valve Chambers** |  | 2026-01-18 | 2026-11-22 |  |  |  |  |  |  |  |  |  |  |
| RSZone 1Road 25Potable NetworkA57260 |  | Zone 1 - Road 25 - Potable Water Network - Washout Valve Chambers - Excavation | 4d | 2026-01-18 A | 2026-01-21 A | RSZone 1Road 25Potable NetworkA57180 | 100% |  |  |  |  | Contract Price Original Scope [10766.6 SAR]; Labour [91.92 h]; Washout Valve Chambers [8] | 10,766.63 | 10,766.63 | RD25 |
| RSZone 1Road 25Potable NetworkA57270 |  | Zone 1 - Road 25 - Potable Water Network - Washout Valve Chambers - Footings | 4d | 2026-01-22 A | 2026-01-26 A | RSZone 1Road 25Potable NetworkA57260 | 100% | 2026-01-22 | 2026-01-27 |  |  | Contract Price Original Scope [32299.9 SAR]; Labour [275.76 h]; Washout Valve Chambers [8] | 32,299.89 | 32,299.89 | RD25 |
| RSZone 1Road 25Potable NetworkA57280 |  | Zone 1 - Road 25 - Potable Water Network - Washout Valve Chambers - Walls | 6d | 2026-01-27 A | 2026-02-02 A | RSZone 1Road 25Potable NetworkA57270 | 100% |  |  |  |  | Contract Price Original Scope [43066.5 SAR]; Labour [367.68 h]; Washout Valve Chambers [8] | 43,066.52 | 43,066.52 | RD25 |
| RSZone 1Road 25Potable NetworkA57290-old |  | Zone 1 - Road 25 - Potable Water Network - Washout Valve Chambers - Slab (old) | 108d | 2026-06-28 A | 2026-11-01 A | RSZone 1Road 25Potable NetworkA57280 | 100% |  |  |  |  | Contract Price Original Scope [47104 SAR]; Labour [402.15 h]; Washout Valve Chambers [5] | 47,104.01 | 47,104.01 | RD25 |
| RSZone 1Road 25Potable NetworkA57320-old |  | Zone 1 - Road 25 - Potable Water Network - Washout Valve Chambers - External Isolation (old) | 106d | 2026-06-30 A | 2026-11-01 A | RSZone 1Road 25Potable NetworkA57290-old | 100% |  |  |  |  | Contract Price Original Scope [1345.83 SAR]; Labour [11.49 h]; Washout Valve Chambers [1] | 1,345.83 | 1,345.83 | RD25 |
| RSZone 1Road 25Potable NetworkA57290 |  | Zone 1 - Road 25 - Potable Water Network - Washout Valve Chambers - Slab | 1.12d | 2026-11-09 | 2026-11-10 | RSZone 1Road 25Potable NetworkA57290-old |  |  |  | 89.65d | 0d | Contract Price Original Scope [28262.4 SAR]; Labour [241.29 h]; Washout Valve Chambers [3] | 28,262.41 |  | RD25 |
| RSZone 1Road 25Potable NetworkA57320 |  | Zone 1 - Road 25 - Potable Water Network - Washout Valve Chambers - External Isolation | 2.62d | 2026-11-10 | 2026-11-12 | RSZone 1Road 25Potable NetworkA57320-old, RSZone 1Road 25Potable NetworkA57290 |  |  |  | 89.65d | 0d | Contract Price Original Scope [9420.8 SAR]; Labour [80.43 h]; Washout Valve Chambers [7] | 9,420.8 |  | RD25 |
| RSZone 1Road 25Potable NetworkA57300 |  | Zone 1 - Road 25 - Potable Water Network - Washout Valve Chambers - D.I Cover | 3d | 2026-11-12 | 2026-11-16 | RSZone 1Road 25Potable NetworkA57320, RSZone 1Road 25Potable NetworkA57290 |  |  |  | 89.65d | 0d | Contract Price Original Scope [53833.2 SAR]; Labour [459.6 h]; Washout Valve Chambers [20] | 53,833.16 |  | RD25 |
| RSZone 1Road 25Potable NetworkA57310 |  | Zone 1 - Road 25 - Potable Water Network - Washout Valve Chambers - Internal Isolation | 3d | 2026-11-16 | 2026-11-19 | RSZone 1Road 25Potable NetworkA57300 |  |  |  | 89.65d | 0d | Contract Price Original Scope [26916.6 SAR]; Labour [229.8 h]; Washout Valve Chambers [20] | 26,916.58 |  | RD25 |
| RSZone 1Road 25Potable NetworkA57330 |  | Zone 1 - Road 25 - Potable Water Network - Washout Valve Chambers - Backfilling | 2d | 2026-11-19 | 2026-11-22 | RSZone 1Road 25Potable NetworkA57310 |  |  |  | 89.65d | 89.45d | Contract Price Original Scope [26916.6 SAR]; Excavator Operator [20 h]; Compactor Operator [20 h]; Dump Truck Operator [20 h]; Water Truck Operator [20 h]; Labour [229.8 h]; Washout Valve Chambers [20] | 26,916.58 |  | RD25 |
|  | 13 | **Air Valve Chambers** |  | 2026-01-20 | 2026-11-23 |  |  |  |  |  |  |  |  |  |  |
| RSZone 1Road 25Potable NetworkA57340 |  | Zone 1 - Road 25 - Potable Water Network - Air Valve Chambers - Excavation | 6d | 2026-01-20 A | 2026-01-26 A | RSZone 1Road 25Potable NetworkA57280 | 100% |  |  |  |  | Contract Price Original Scope [3708.3 SAR]; Labour [31.66 h]; Air Valve Chambers [3] | 3,708.3 | 3,708.3 | RD25 |
| RSZone 1Road 25Potable NetworkA57350 |  | Zone 1 - Road 25 - Potable Water Network - Air Valve Chambers - Footings | 5d | 2026-01-27 A | 2026-02-01 A | RSZone 1Road 25Potable NetworkA57340 | 100% |  |  |  |  | Contract Price Original Scope [11124.9 SAR]; Labour [94.98 h]; Air Valve Chambers [3] | 11,124.91 | 11,124.91 | RD25 |
| RSZone 1Road 25Potable NetworkA57360 |  | Zone 1 - Road 25 - Potable Water Network - Air Valve Chambers - Walls | 6d | 2026-02-02 A | 2026-02-08 A | RSZone 1Road 25Potable NetworkA57350 | 100% |  |  |  |  | Contract Price Original Scope [14833.2 SAR]; Labour [126.64 h]; Air Valve Chambers [3] | 14,833.21 | 14,833.21 | RD25 |
| RSZone 1Road 25Potable NetworkA57370-old |  | Zone 1 - Road 25 - Potable Water Network - Air Valve Chambers - Slab (old) | 106d | 2026-06-30 A | 2026-11-01 A | RSZone 1Road 25Potable NetworkA57360 | 100% |  |  |  |  | Contract Price Original Scope [25958.1 SAR]; Labour [221.62 h]; Air Valve Chambers [3] | 25,958.12 | 25,958.12 | RD25 |
| RSZone 1Road 25Potable NetworkA57370 |  | Zone 1 - Road 25 - Potable Water Network - Air Valve Chambers - Slab | 1.5d | 2026-11-09 | 2026-11-10 | RSZone 1Road 25Potable NetworkA57370-old |  |  |  | 88.9d | 0d | Contract Price Original Scope [25958.1 SAR]; Labour [221.62 h]; Air Valve Chambers [3] | 25,958.12 |  | RD25 |
| RSZone 1Road 25Potable NetworkA57390 |  | Zone 1 - Road 25 - Potable Water Network - Air Valve Chambers - Internal Isolation | 3d | 2026-11-10 | 2026-11-14 | RSZone 1Road 25Potable NetworkA57370 |  |  |  | 88.9d | 0d | Contract Price Original Scope [12361 SAR]; Labour [105.53 h]; Air Valve Chambers [10] | 12,361.01 |  | RD25 |
| RSZone 1Road 25Potable NetworkA57380 |  | Zone 1 - Road 25 - Potable Water Network - Air Valve Chambers - D.I Cover | 3d | 2026-11-14 | 2026-11-17 | RSZone 1Road 25Potable NetworkA57390 |  |  |  | 88.9d | 0d | Contract Price Original Scope [32138.6 SAR]; Labour [274.38 h]; Air Valve Chambers [13] | 32,138.62 |  | RD25 |
| RSZone 1Road 25Potable NetworkA57400 |  | Zone 1 - Road 25 - Potable Water Network - Air Valve Chambers - External Isolation | 3d | 2026-11-17 | 2026-11-21 | RSZone 1Road 25Potable NetworkA57380 |  |  |  | 88.9d | 0d | Contract Price Original Scope [4944.4 SAR]; Labour [42.21 h]; Air Valve Chambers [4] | 4,944.4 |  | RD25 |
| RSZone 1Road 25Potable NetworkA57410 |  | Zone 1 - Road 25 - Potable Water Network - Air Valve Chambers - Backfilling | 2d | 2026-11-21 | 2026-11-23 | RSZone 1Road 25Potable NetworkA57400 |  |  |  | 88.9d | 88.7d | Contract Price Original Scope [3708.3 SAR]; Excavator Operator [20 h]; Compactor Operator [20 h]; Dump Truck Operator [20 h]; Water Truck Operator [20 h]; Labour [31.66 h]; Air Valve Chambers [3] | 3,708.3 |  | RD25 |
|  | 1 | **Sand Bedding** |  | 2026-06-21 | 2026-11-09 |  |  |  |  |  |  |  |  |  |  |
| RSZone 1Road 25Potable NetworkA55770-old |  | Zone 1 - Road 25 - Potable Water Network - Sand Bedding - Bedding (old) | 114d | 2026-06-21 A | 2026-11-01 A | RSZone 1Road 25Potable NetworkA57360 | 100% |  |  |  |  | Contract Price Original Scope [6558.43 SAR]; Compactor Operator [16.3 h]; Equipment Operator [16.3 h]; Water Truck Operator [16.3 h]; Labour [55.99 h]; Sand Bedding [352.89] | 6,558.43 | 6,558.43 | RD25 |
| RSZone 1Road 25Potable NetworkA55770 |  | Zone 1 - Road 25 - Potable Water Network - Sand Bedding - Bedding | 1d | 2026-11-09 | 2026-11-09 | RSZone 1Road 25Potable NetworkA55770-old |  |  |  | 100.4d | 100.2d | Contract Price Original Scope [1488.72 SAR]; Compactor Operator [3.7 h]; Equipment Operator [3.7 h]; Water Truck Operator [3.7 h]; Labour [12.71 h]; Sand Bedding [80.11] | 1,488.72 |  | RD25 |

| ID | WBS | Activity | Duration | Start | Finish | Predecessors | Complete | Planned start | Planned finish | Total float | Free float | Resources | Cost | Actual cost | MODON |
| --- | --- | --- | --- | --- | --- | --- | --- | --- | --- | --- | --- | --- | --- | --- | --- |
|  | 14 | **FIRE HYDRANT** |  | 2026-07-01 | 2026-11-19 |  |  |  |  |  |  |  |  |  |  |
| RSZone 1Road 25Potable NetworkA57600-old |  | Zone 1 - Road 25 - Potable Water Network - FIRE HYDRANT - Excavation (old) | 105d | 2026-07-01 A | 2026-11-01 A | RSZone 1Road 25Potable NetworkA57340 | 100% |  |  |  |  | Contract Price Original Scope [22195 SAR]; Excavator Operator [28.23 h]; Dump Truck Operator [28.23 h]; Labour [189.49 h]; Fire Hydrant [16] | 22,194.97 | 22,194.97 | RD25 |
| RSZone 1Road 25Potable NetworkA57610-old |  | Zone 1 - Road 25 - Potable Water Network - FIRE HYDRANT - Buried Gate Valve Installation (old) | 104d | 2026-07-02 A | 2026-11-01 A | RSZone 1Road 25Potable NetworkA57600-old | 100% | 2026-07-02 | 2026-11-02 |  |  | Labour; Fire Hydrant [16] |  |  | RD25 |
| RSZone 1Road 25Potable NetworkA57620-old |  | Zone 1 - Road 25 - Potable Water Network - FIRE HYDRANT - Fire Hydrant Installation (old) | 101d | 2026-07-06 A | 2026-11-01 A | RSZone 1Road 25Potable NetworkA57610-old | 100% |  |  |  |  | Contract Price Original Scope [162023 SAR]; Labour [1383.27 h]; Fire Hydrant [16] | 162,023.29 | 162,023.29 | RD25 |
| RSZone 1Road 25Potable NetworkA57600 |  | Zone 1 - Road 25 - Potable Water Network - FIRE HYDRANT - Excavation | 1d | 2026-11-09 | 2026-11-09 | RSZone 1Road 25Potable NetworkA57600-old |  |  |  | 91.4d | 0d | Contract Price Original Scope [1388.82 SAR]; Excavator Operator [1.77 h]; Dump Truck Operator [1.77 h]; Labour [11.86 h]; Fire Hydrant [1] | 1,388.82 |  | RD25 |
| RSZone 1Road 25Potable NetworkA57610 |  | Zone 1 - Road 25 - Potable Water Network - FIRE HYDRANT - Buried Gate Valve Installation | 1d | 2026-11-10 | 2026-11-10 | RSZone 1Road 25Potable NetworkA57610-old, RSZone 1Road 25Potable NetworkA57600 |  |  |  | 91.4d | 0d | Labour; Fire Hydrant [1] |  |  | RD25 |
| RSZone 1Road 25Potable NetworkA57620 |  | Zone 1 - Road 25 - Potable Water Network - FIRE HYDRANT - Fire Hydrant Installation | 1d | 2026-11-11 | 2026-11-11 | RSZone 1Road 25Potable NetworkA57620-old, RSZone 1Road 25Potable NetworkA57610 |  |  |  | 91.4d | 0d | Contract Price Original Scope [10138.4 SAR]; Labour [86.56 h]; Fire Hydrant [1] | 10,138.41 |  | RD25 |
| RSZone 1Road 25Potable NetworkA57630 |  | Zone 1 - Road 25 - Potable Water Network - FIRE HYDRANT - Surface Box | 3d | 2026-11-12 | 2026-11-15 | RSZone 1Road 25Potable NetworkA57620, RSZone 1Road 25Potable NetworkA57600, RSZone 1Road 25Potable NetworkA57610 |  |  |  | 91.4d | 0d | Labour; Fire Hydrant [17] |  |  | RD25 |
| RSZone 1Road 25Potable NetworkA57640 |  | Zone 1 - Road 25 - Potable Water Network - FIRE HYDRANT - Test | 2d | 2026-11-16 | 2026-11-17 | RSZone 1Road 25Potable NetworkA57630 |  |  |  | 91.4d | 0d | Contract Price Original Scope [16508.7 SAR]; Pump Operator [20 h]; Equipment Operator [20 h]; Labour [140.94 h]; Fire Hydrant [17] | 16,508.66 |  | RD25 |
| RSZone 1Road 25Potable NetworkA57650 |  | Zone 1 - Road 25 - Potable Water Network - FIRE HYDRANT - Backfilling | 2d | 2026-11-18 | 2026-11-19 | RSZone 1Road 25Potable NetworkA57640 |  |  |  | 91.4d | 91.2d | Contract Price Original Scope [23583.8 SAR]; Excavator Operator [20 h]; Compactor Operator [20 h]; Dump Truck Operator [20 h]; Water Truck Operator [20 h]; Labour [201.35 h]; Fire Hydrant [17] | 23,583.79 |  | RD25 |
|  | 5 | **Lateral Irrigation Network** |  | 2025-06-22 | 2027-01-18 |  |  |  |  |  |  |  |  |  |  |
|  | 6 | **HDPE Pipes** |  | 2025-06-22 | 2026-11-12 |  |  |  |  |  |  |  |  |  |  |
|  | 2 | **HDPE Pipes 125 MM** |  | 2025-06-22 | 2026-11-12 |  |  |  |  |  |  |  |  |  |  |
| RSZone 1Road 25Irrigation NetworkA21990 |  | Zone 1 - Road 25 - Lateral Irrigation Network - HDPE Pipes 125 MM - Excavation | 3d | 2025-06-22 A | 2025-06-24 A | RSZone 1Road 24Irrigation NetworkA94590 | 100% |  |  |  |  | Contract Price Original Scope [2984.5 SAR]; Excavator Operator [30 h]; Dump Truck Operator [30 h]; Labour [25.48 h]; HDPE Pipes 125 MM [215] | 2,984.5 | 2,984.5 | RD25 |
| RSZone 1Road 25Irrigation NetworkA22000 |  | Zone 1 - Road 25 - Lateral Irrigation Network - HDPE Pipes 125 MM - Pipe Installation | 7d | 2025-06-25 A | 2025-07-02 A | RSZone 1Road 25Irrigation NetworkA21990 | 100% |  |  |  |  | Contract Price Original Scope [20891.5 SAR]; Excavator Operator [40 h]; Crane Operator [40 h]; Equipment Operator [40 h]; Labour [178.36 h]; HDPE Pipes 125 MM [215] | 20,891.48 | 20,891.48 | RD25 |
| RSZone 1Road 25Irrigation NetworkA22010 |  | Zone 1 - Road 25 - Lateral Irrigation Network - HDPE Pipes 125 MM - Test | 2d | 2026-11-09 | 2026-11-10 | RSZone 1Road 25Irrigation NetworkA22000 |  |  |  | 97.4d | 0d | Contract Price Original Scope [2984.5 SAR]; Pump Operator [20 h]; Equipment Operator [20 h]; Labour [25.48 h]; HDPE Pipes 125 MM [215] | 2,984.5 |  | RD25 |
| RSZone 1Road 25Irrigation NetworkA22020 |  | Zone 1 - Road 25 - Lateral Irrigation Network - HDPE Pipes 125 MM - Backfilling | 2d | 2026-11-11 | 2026-11-12 | RSZone 1Road 25Irrigation NetworkA22010 |  |  |  | 97.4d | 96.76d | Contract Price Original Scope [2984.5 SAR]; Excavator Operator [20 h]; Compactor Operator [20 h]; Dump Truck Operator [20 h]; Water Truck Operator [20 h]; Labour [25.48 h]; HDPE Pipes 125 MM [215] | 2,984.5 |  | RD25 |
|  | 1 | **HDPE Fitting** |  | 2026-06-02 | 2026-11-11 |  |  |  |  |  |  |  |  |  |  |
|  | 2 | **Tees** |  | 2026-06-02 | 2026-06-04 |  |  |  |  |  |  |  |  |  |  |
| RSZone 1Road 25Irrigation NetworkA86140 |  | Zone 1 - Road 25 - Lateral Irrigation Network - Tees - Installation | 2.9d | 2026-06-02 A | 2026-06-04 A | RSZone 1Road 25Irrigation NetworkA22000 | 100% |  |  |  |  | Contract Price Original Scope [24577 SAR]; Labour [209.83 h]; Fittings - Tees (all sizes) [16] | 24,576.96 | 24,576.96 | RD25 |
|  | 3 | **End Cap** |  | 2026-11-09 | 2026-11-11 |  |  |  |  |  |  |  |  |  |  |
| RSZone 1Road 25Irrigation NetworkA86150 |  | Zone 1 - Road 25 - Lateral Irrigation Network - End Cap - Installation | 3d | 2026-11-09 | 2026-11-11 | RSZone 1Road 25Irrigation NetworkA86140 |  |  |  | 98.4d | 97.76d | Contract Price Original Scope [4483.08 SAR]; Labour [38.27 h]; Fittings - End Caps (all sizes) [12] | 4,483.08 |  | RD25 |
|  | 11 | **Valves** |  | 2026-05-04 | 2026-11-30 |  |  |  |  |  |  |  |  |  |  |
|  | 1 | **Buried Valves** |  | 2026-05-04 | 2026-11-18 |  |  |  |  |  |  |  |  |  |  |
| RSZone 1Road 25Irrigation NetworkA21900- |  | Zone 1 - Road 25 - Lateral Irrigation Network - Buried Valves - Excavation (old) | 155d | 2026-05-04 A | 2026-11-01 A | RSZone 1Road 25Irrigation NetworkA86140 | 100% |  |  |  |  | Contract Price Original Scope [6456.82 SAR]; Excavator Operator [26.92 h]; Dump Truck Operator [26.92 h]; Labour [55.13 h]; Buried Valves [96] | 6,456.82 | 6,456.82 | RD25 |
| RSZone 1Road 25Irrigation NetworkA22480- |  | Zone 1 - Road 25 - Lateral Irrigation Network - Buried Valves - Installation (old) | 154d | 2026-05-05 A | 2026-11-01 A | RSZone 1Road 25Irrigation NetworkA21900- | 100% |  |  |  |  | Contract Price Original Scope [83938.7 SAR]; Labour [716.63 h]; Buried Valves [96] | 83,938.7 | 83,938.7 | RD25 |
| RSZone 1Road 25Irrigation NetworkA21900- |  | Zone 1 - Road 25 - Lateral Irrigation Network - Buried Valves - Excavation (old) | 1d | 2026-11-09 | 2026-11-09 | RSZone 1Road 25Irrigation NetworkA21900- |  |  |  | 82.4d | 0d | Contract Price Original Scope [739.64 SAR]; Excavator Operator [3.08 h]; Dump Truck Operator [3.08 h]; Labour [6.31 h]; Buried Valves [11] | 739.64 |  | RD25 |
| RSZone 1Road 25Irrigation NetworkA22480- |  | Zone 1 - Road 25 - Lateral Irrigation Network - Buried Valves - Installation (old) | 1d | 2026-11-10 | 2026-11-10 | RSZone 1Road 25Irrigation NetworkA22480-, RSZone 1Road 25Irrigation NetworkA21900- |  |  |  | 82.4d | 0d | Contract Price Original Scope [9615.27 SAR]; Labour [82.09 h]; Buried Valves [11] | 9,615.27 |  | RD25 |
| RSZone 1Road 25Irrigation NetworkA22490 |  | Zone 1 - Road 25 - Lateral Irrigation Network - Buried Valves - Surface Box | 3d | 2026-11-11 | 2026-11-14 | RSZone 1Road 25Irrigation NetworkA22480-, RSZone 1Road 25Irrigation NetworkA21900- |  |  |  | 82.4d | 0d | Labour; Buried Valves [107] |  |  | RD25 |
| RSZone 1Road 25Irrigation NetworkA22500 |  | Zone 1 - Road 25 - Lateral Irrigation Network - Buried Valves - Test | 2d | 2026-11-15 | 2026-11-16 | RSZone 1Road 25Irrigation NetworkA22490 |  |  |  | 92.4d | 0d | Contract Price Original Scope [28785.8 SAR]; Pump Operator [20 h]; Equipment Operator [20 h]; Labour [245.76 h]; Buried Valves [107] | 28,785.84 |  | RD25 |
| RSZone 1Road 25Irrigation NetworkA22510 |  | Zone 1 - Road 25 - Lateral Irrigation Network - Buried Valves - Backfilling | 2d | 2026-11-17 | 2026-11-18 | RSZone 1Road 25Irrigation NetworkA22500 |  |  |  | 92.4d | 91.76d | Contract Price Original Scope [14392.9 SAR]; Excavator Operator [20 h]; Compactor Operator [20 h]; Dump Truck Operator [20 h]; Water Truck Operator [20 h]; Labour [122.88 h]; Buried Valves [107] | 14,392.92 |  | RD25 |

| ID | WBS | Activity | Duration | Start | Finish | Predecessors | Complete | Planned start | Planned finish | Total float | Free float | Resources | Cost | Actual cost | MODON |
| --- | --- | --- | --- | --- | --- | --- | --- | --- | --- | --- | --- | --- | --- | --- | --- |
|  | 4 | **Washout Valves** |  | 2026-11-15 | 2026-11-23 |  |  |  |  |  |  |  |  |  |  |
| RSZone 1Road 25Irrigation NetworkA22590 |  | Zone 1 - Road 25 - Lateral Irrigation Network - Washout Valves - Surface Box | 3d | 2026-11-15 | 2026-11-17 | RSZone 1Road 25Irrigation NetworkA22490 |  |  |  | 82.4d | 0d | Labour; Washout / Air / FlowMeter Valves [4] |  |  | RD25 |
| RSZone 1Road 25Irrigation NetworkA22580 |  | Zone 1 - Road 25 - Lateral Irrigation Network - Washout Valves - Installation | 3d | 2026-11-18 | 2026-11-21 | RSZone 1Road 25Irrigation NetworkA22590 |  |  |  | 88.4d | 0d | Labour; Washout / Air / FlowMeter Valves [4] |  |  | RD25 |
| RSZone 1Road 25Irrigation NetworkA22600 |  | Zone 1 - Road 25 - Lateral Irrigation Network - Washout Valves - Test | 2d | 2026-11-22 | 2026-11-23 | RSZone 1Road 25Irrigation NetworkA22580 |  |  |  | 88.4d | 87.76d | Pump Operator [20 h]; Equipment Operator [20 h]; Labour; Washout / Air / FlowMeter Valves [4] |  |  | RD25 |
|  | 2 | **Air Valves** |  | 2026-11-18 | 2026-11-30 |  |  |  |  |  |  |  |  |  |  |
|  | 1 | **Air Valves 355 MM** |  | 2026-11-18 | 2026-11-26 |  |  |  |  |  |  |  |  |  |  |
| RSZone 1Road 25Irrigation NetworkA22640 |  | Zone 1 - Road 25 - Lateral Irrigation Network - Air Valves 355 MM - Surface Box | 3d | 2026-11-18 | 2026-11-21 | RSZone 1Road 25Irrigation NetworkA22590 |  |  |  | 82.4d | 0d | Labour; Washout / Air / FlowMeter Valves [2] |  |  | RD25 |
| RSZone 1Road 25Irrigation NetworkA22630 |  | Zone 1 - Road 25 - Lateral Irrigation Network - Air Valves 355 MM - Installation | 3d | 2026-11-22 | 2026-11-24 | RSZone 1Road 25Irrigation NetworkA22640 |  |  |  | 85.4d | 0d | Labour; Washout / Air / FlowMeter Valves [2] |  |  | RD25 |
| RSZone 1Road 25Irrigation NetworkA22650 |  | Zone 1 - Road 25 - Lateral Irrigation Network - Air Valves 355 MM - Test | 2d | 2026-11-25 | 2026-11-26 | RSZone 1Road 25Irrigation NetworkA22630 |  |  |  | 85.4d | 84.76d | Pump Operator [20 h]; Equipment Operator [20 h]; Labour; Washout / Air / FlowMeter Valves [2] |  |  | RD25 |
|  | 2 | **Air Valves 560 MM** |  | 2026-11-22 | 2026-11-30 |  |  |  |  |  |  |  |  |  |  |
| RSZone 1Road 25Irrigation NetworkA90060 |  | Zone 1 - Road 25 - Lateral Irrigation Network - Air Valves 560 MM - Surface Box | 3d | 2026-11-22 | 2026-11-24 | RSZone 1Road 25Irrigation NetworkA22640 |  |  |  | 82.4d | 0d | Labour; Washout / Air / FlowMeter Valves [1] |  |  | RD25 |
| RSZone 1Road 25Irrigation NetworkA90050 |  | Zone 1 - Road 25 - Lateral Irrigation Network - Air Valves 560 MM - Installation | 3d | 2026-11-25 | 2026-11-28 | RSZone 1Road 25Irrigation NetworkA90060 |  |  |  | 82.4d | 0d | Labour; Washout / Air / FlowMeter Valves [1] |  |  | RD25 |
| RSZone 1Road 25Irrigation NetworkA90070 |  | Zone 1 - Road 25 - Lateral Irrigation Network - Air Valves 560 MM - Test | 2d | 2026-11-29 | 2026-11-30 | RSZone 1Road 25Irrigation NetworkA90050 |  |  |  | 82.4d | 81.76d | Pump Operator [20 h]; Equipment Operator [20 h]; Labour; Washout / Air / FlowMeter Valves [1] |  |  | RD25 |
|  | 5 | **FlowMeter Valves** |  | 2026-11-25 | 2026-11-30 |  |  |  |  |  |  |  |  |  |  |
| RSZone 1Road 25Irrigation NetworkA22690 |  | Zone 1 - Road 25 - Lateral Irrigation Network - FlowMeter Valves - Surface Box | 3d | 2026-11-25 | 2026-11-28 | RSZone 1Road 25Irrigation NetworkA90060 |  |  |  | 82.4d | 0d | Labour; Washout / Air / FlowMeter Valves [2] |  |  | RD25 |
| RSZone 1Road 25Irrigation NetworkA22700 |  | Zone 1 - Road 25 - Lateral Irrigation Network - FlowMeter Valves - Test | 2d | 2026-11-29 | 2026-11-30 | RSZone 1Road 25Irrigation NetworkA22690 |  |  |  | 82.4d | 81.76d | Pump Operator [20 h]; Equipment Operator [20 h]; Labour; Washout / Air / FlowMeter Valves [2] |  |  | RD25 |
|  | 2 | **Valve Champer** |  | 2025-06-22 | 2027-01-18 |  |  |  |  |  |  |  |  |  |  |
|  | 1 | **Isolation Champer** |  | 2025-06-22 | 2026-11-21 |  |  |  |  |  |  |  |  |  |  |
| RSZone 1Road 25Irrigation NetworkA22720 |  | Zone 1 - Road 25 - Lateral Irrigation Network - Isolation Champer - Excavation | 4d | 2025-06-22 A | 2025-06-25 A | RSZone 1Road 25Irrigation NetworkA86140 | 100% |  |  |  |  | Contract Price Original Scope [2124.11 SAR]; Labour [18.13 h]; Isolation Chambers [1] | 2,124.11 | 2,124.11 | RD25 |
| RSZone 1Road 25Irrigation NetworkA22730 |  | Zone 1 - Road 25 - Lateral Irrigation Network - Isolation Champer - Footings | 5d | 2025-06-26 A | 2025-07-01 A | RSZone 1Road 25Irrigation NetworkA22720 | 100% | 2025-06-26 | 2025-07-02 |  |  | Contract Price Original Scope [6372.33 SAR]; Labour [54.4 h]; Isolation Chambers [1] | 6,372.33 | 6,372.33 | RD25 |
| RSZone 1Road 25Irrigation NetworkA22740 |  | Zone 1 - Road 25 - Lateral Irrigation Network - Isolation Champer - Walls | 7d | 2025-07-02 A | 2025-07-09 A | RSZone 1Road 25Irrigation NetworkA22730 | 100% |  |  |  |  | Contract Price Original Scope [8496.44 SAR]; Labour [72.54 h]; Isolation Chambers [1] | 8,496.44 | 8,496.44 | RD25 |
| RSZone 1Road 25Irrigation NetworkA22750 |  | Zone 1 - Road 25 - Lateral Irrigation Network - Isolation Champer - Slab | 5d | 2025-07-10 A | 2025-07-15 A | RSZone 1Road 25Irrigation NetworkA22740 | 100% | 2025-07-10 | 2025-07-16 |  |  | Contract Price Original Scope [14868.8 SAR]; Labour [126.94 h]; Isolation Chambers [1] | 14,868.77 | 14,868.77 | RD25 |
| RSZone 1Road 25Irrigation NetworkA22770 |  | Zone 1 - Road 25 - Lateral Irrigation Network - Isolation Champer - Internal Isolation | 3d | 2026-11-09 | 2026-11-11 | RSZone 1Road 25Irrigation NetworkA22750 |  |  |  | 90.4d | 0d | Contract Price Original Scope [2124.11 SAR]; Labour [18.13 h]; Isolation Chambers [1] | 2,124.11 |  | RD25 |
| RSZone 1Road 25Irrigation NetworkA22760 |  | Zone 1 - Road 25 - Lateral Irrigation Network - Isolation Champer - D.I Cover | 3d | 2026-11-12 | 2026-11-15 | RSZone 1Road 25Irrigation NetworkA22770 |  |  |  | 90.4d | 0d | Contract Price Original Scope [4248.22 SAR]; Labour [36.27 h]; Isolation Chambers [1] | 4,248.22 |  | RD25 |
| RSZone 1Road 25Irrigation NetworkA22780 |  | Zone 1 - Road 25 - Lateral Irrigation Network - Isolation Champer - External Isolation | 3d | 2026-11-16 | 2026-11-18 | RSZone 1Road 25Irrigation NetworkA22760 |  |  |  | 90.4d | 0d | Contract Price Original Scope [2124.11 SAR]; Labour [18.13 h]; Isolation Chambers [1] | 2,124.11 |  | RD25 |
| RSZone 1Road 25Irrigation NetworkA22790 |  | Zone 1 - Road 25 - Lateral Irrigation Network - Isolation Champer - Backfilling | 2d | 2026-11-19 | 2026-11-21 | RSZone 1Road 25Irrigation NetworkA22780 |  |  |  | 90.4d | 89.76d | Contract Price Original Scope [2124.11 SAR]; Excavator Operator [20 h]; Compactor Operator [20 h]; Dump Truck Operator [20 h]; Water Truck Operator [20 h]; Labour [18.13 h]; Isolation Chambers [1] | 2,124.11 |  | RD25 |

| ID | WBS | Activity | Duration | Start | Finish | Predecessors | Complete | Planned start | Planned finish | Total float | Free float | Resources | Cost | Actual cost | MODON |
| --- | --- | --- | --- | --- | --- | --- | --- | --- | --- | --- | --- | --- | --- | --- | --- |
|  | 2 | **Air Valves Champer** |  | 2025-06-23 | 2026-11-17 |  |  |  |  |  |  |  |  |  |  |
| RSZone 1Road 25Irrigation NetworkA22800 |  | Zone 1 - Road 25 - Lateral Irrigation Network - Air Valves Champer - Excavation | 6d | 2025-06-23 A | 2025-06-29 A | RSZone 1Road 25Irrigation NetworkA22750 | 100% |  |  |  |  | Contract Price Original Scope [6916.63 SAR]; Labour [59.05 h]; Air Valve Chambers [6] | 6,916.63 | 6,916.63 | RD25 |
| RSZone 1Road 25Irrigation NetworkA22810 |  | Zone 1 - Road 25 - Lateral Irrigation Network - Air Valves Champer - Footings | 6d | 2025-06-30 A | 2025-07-06 A | RSZone 1Road 25Irrigation NetworkA22800 | 100% |  |  |  |  | Contract Price Original Scope [20749.9 SAR]; Labour [177.15 h]; Air Valve Chambers [6] | 20,749.88 | 20,749.88 | RD25 |
| RSZone 1Road 25Irrigation NetworkA22820 |  | Zone 1 - Road 25 - Lateral Irrigation Network - Air Valves Champer - Walls | 3.9d | 2025-07-07 A | 2025-07-10 A | RSZone 1Road 25Irrigation NetworkA22810 | 100% |  |  |  |  | Contract Price Original Scope [27666.5 SAR]; Labour [236.2 h]; Air Valve Chambers [6] | 27,666.51 | 27,666.51 | RD25 |
| RSZone 1Road 25Irrigation NetworkA22850 |  | Zone 1 - Road 25 - Lateral Irrigation Network - Air Valves Champer - Internal Isolation | 4d | 2025-07-13 A | 2025-07-16 A | RSZone 1Road 25Irrigation NetworkA22820 | 100% |  |  |  |  | Contract Price Original Scope [6916.63 SAR]; Labour [59.05 h]; Air Valve Chambers [6] | 6,916.63 | 6,916.63 | RD25 |
| RSZone 1Road 25Irrigation NetworkA22860 |  | Zone 1 - Road 25 - Lateral Irrigation Network - Air Valves Champer - External Isolation | 4d | 2025-07-17 A | 2025-07-21 A | RSZone 1Road 25Irrigation NetworkA22850 | 100% | 2025-07-17 | 2025-07-22 |  |  | Contract Price Original Scope [6916.63 SAR]; Labour [59.05 h]; Air Valve Chambers [6] | 6,916.63 | 6,916.63 | RD25 |
| RSZone 1Road 25Irrigation NetworkA22830 |  | Zone 1 - Road 25 - Lateral Irrigation Network - Air Valves Champer - Slab | 3d | 2026-11-09 | 2026-11-11 | RSZone 1Road 25Irrigation NetworkA22860 |  |  |  | 93.4d | 0d | Contract Price Original Scope [48416.4 SAR]; Labour [413.35 h]; Air Valve Chambers [6] | 48,416.39 |  | RD25 |
| RSZone 1Road 25Irrigation NetworkA22840 |  | Zone 1 - Road 25 - Lateral Irrigation Network - Air Valves Champer - D.I Cover | 3d | 2026-11-12 | 2026-11-15 | RSZone 1Road 25Irrigation NetworkA22830 |  |  |  | 93.4d | 0d | Contract Price Original Scope [13833.2 SAR]; Labour [118.1 h]; Air Valve Chambers [6] | 13,833.25 |  | RD25 |
| RSZone 1Road 25Irrigation NetworkA22870 |  | Zone 1 - Road 25 - Lateral Irrigation Network - Air Valves Champer - Backfilling | 2d | 2026-11-16 | 2026-11-17 | RSZone 1Road 25Irrigation NetworkA22840 |  |  |  | 93.4d | 92.76d | Contract Price Original Scope [6916.63 SAR]; Excavator Operator [20 h]; Compactor Operator [20 h]; Dump Truck Operator [20 h]; Water Truck Operator [20 h]; Labour [59.05 h]; Air Valve Chambers [6] | 6,916.63 |  | RD25 |
|  | 3 | **Washout Valves Champer** |  | 2026-12-23 | 2027-01-18 |  |  |  |  |  |  |  |  |  |  |
| RSZone 1Road 25Irrigation NetworkA22880 |  | Zone 1 - Road 25 - Lateral Irrigation Network - Washout Valves Champer - Excavation | 2d | 2026-12-23 | 2026-12-26 | RSZone 1Road 09Irrigation NetworkA32230 |  |  |  | 0.64d | 0d | Contract Price Original Scope [11641.2 SAR]; Labour [99.39 h]; Washout Chambers [7] | 11,641.16 |  | RD25 |
| RSZone 1Road 25Irrigation NetworkA22890 |  | Zone 1 - Road 25 - Lateral Irrigation Network - Washout Valves Champer - Footings | 3d | 2026-12-26 | 2026-12-29 | RSZone 1Road 25Irrigation NetworkA22880 |  |  |  | 40.94d | 0d | Contract Price Original Scope [34923.5 SAR]; Labour [298.16 h]; Washout Chambers [7] | 34,923.47 |  | RD25 |
| RSZone 1Road 25Irrigation NetworkA22910 |  | Zone 1 - Road 25 - Lateral Irrigation Network - Washout Valves Champer - Slab | 3d | 2026-12-29 | 2027-01-02 | RSZone 1Road 25Irrigation NetworkA22890 |  |  |  | 40.94d | 0d | Contract Price Original Scope [81488.1 SAR]; Labour [695.7 h]; Washout Chambers [7] | 81,488.09 |  | RD25 |
| RSZone 1Road 25Irrigation NetworkA22900 |  | Zone 1 - Road 25 - Lateral Irrigation Network - Washout Valves Champer - Walls | 3d | 2027-01-02 | 2027-01-05 | RSZone 1Road 25Irrigation NetworkA22910 |  |  |  | 40.94d | 0d | Contract Price Original Scope [46564.6 SAR]; Labour [397.54 h]; Washout Chambers [7] | 46,564.62 |  | RD25 |
| RSZone 1Road 25Irrigation NetworkA22920 |  | Zone 1 - Road 25 - Lateral Irrigation Network - Washout Valves Champer - D.I Cover | 3d | 2027-01-05 | 2027-01-09 | RSZone 1Road 25Irrigation NetworkA22900 |  |  |  | 40.94d | 0d | Contract Price Original Scope [23282.3 SAR]; Labour [198.77 h]; Washout Chambers [7] | 23,282.31 |  | RD25 |
| RSZone 1Road 25Irrigation NetworkA22930 |  | Zone 1 - Road 25 - Lateral Irrigation Network - Washout Valves Champer - Internal Isolation | 3d | 2027-01-09 | 2027-01-12 | RSZone 1Road 25Irrigation NetworkA22920 |  |  |  | 40.94d | 0d | Contract Price Original Scope [11641.2 SAR]; Labour [99.39 h]; Washout Chambers [7] | 11,641.16 |  | RD25 |
| RSZone 1Road 25Irrigation NetworkA22940 |  | Zone 1 - Road 25 - Lateral Irrigation Network - Washout Valves Champer - External Isolation | 3d | 2027-01-12 | 2027-01-16 | RSZone 1Road 25Irrigation NetworkA22930 |  |  |  | 40.94d | 0d | Contract Price Original Scope [11641.2 SAR]; Labour [99.39 h]; Washout Chambers [7] | 11,641.16 |  | RD25 |
| RSZone 1Road 25Irrigation NetworkA22950 |  | Zone 1 - Road 25 - Lateral Irrigation Network - Washout Valves Champer - Backfilling | 2d | 2027-01-16 | 2027-01-18 | RSZone 1Road 25Irrigation NetworkA22940 |  |  |  | 40.94d | 40.3d | Contract Price Original Scope [11641.2 SAR]; Excavator Operator [20 h]; Compactor Operator [20 h]; Dump Truck Operator [20 h]; Water Truck Operator [20 h]; Labour [99.39 h]; Washout Chambers [7] | 11,641.16 |  | RD25 |
|  | 4 | **FlowMeter Valves Champer** |  | 2025-06-25 | 2026-11-14 |  |  |  |  |  |  |  |  |  |  |
| RSZone 1Road 25Irrigation NetworkA22960 |  | Zone 1 - Road 25 - Lateral Irrigation Network - FlowMeter Valves Champer - Excavation | 4d | 2025-06-25 A | 2025-06-29 A | RSZone 1Road 25Irrigation NetworkA22860 | 100% |  |  |  |  | Contract Price Original Scope [6768.05 SAR]; Labour [57.78 h]; FlowMeter Chambers [4] | 6,768.05 | 6,768.05 | RD25 |
| RSZone 1Road 25Irrigation NetworkA22970 |  | Zone 1 - Road 25 - Lateral Irrigation Network - FlowMeter Valves Champer - Footings | 6d | 2025-06-30 A | 2025-07-06 A | RSZone 1Road 25Irrigation NetworkA22960 | 100% |  |  |  |  | Contract Price Original Scope [20304.1 SAR]; Labour [173.35 h]; FlowMeter Chambers [4] | 20,304.14 | 20,304.14 | RD25 |
| RSZone 1Road 25Irrigation NetworkA22980 |  | Zone 1 - Road 25 - Lateral Irrigation Network - FlowMeter Valves Champer - Walls | 7d | 2025-07-07 A | 2025-07-14 A | RSZone 1Road 25Irrigation NetworkA22970 | 100% |  |  |  |  | Contract Price Original Scope [27072.2 SAR]; Labour [231.13 h]; FlowMeter Chambers [4] | 27,072.19 | 27,072.19 | RD25 |
| RSZone 1Road 25Irrigation NetworkA22990 |  | Zone 1 - Road 25 - Lateral Irrigation Network - FlowMeter Valves Champer - Slab | 5d | 2025-07-15 A | 2025-07-20 A | RSZone 1Road 25Irrigation NetworkA22980 | 100% |  |  |  |  | Contract Price Original Scope [47376.3 SAR]; Labour [404.47 h]; FlowMeter Chambers [4] | 47,376.33 | 47,376.33 | RD25 |
| RSZone 1Road 25Irrigation NetworkA23010 |  | Zone 1 - Road 25 - Lateral Irrigation Network - FlowMeter Valves Champer - Internal Isolation | 3d | 2025-07-21 A | 2025-07-23 A | RSZone 1Road 25Irrigation NetworkA22990 | 100% |  |  |  |  | Contract Price Original Scope [6768.05 SAR]; Labour [57.78 h]; FlowMeter Chambers [4] | 6,768.05 | 6,768.05 | RD25 |
| RSZone 1Road 25Irrigation NetworkA23020 |  | Zone 1 - Road 25 - Lateral Irrigation Network - FlowMeter Valves Champer - External Isolation | 3d | 2025-07-24 A | 2025-07-27 A | RSZone 1Road 25Irrigation NetworkA23010 | 100% | 2025-07-24 | 2025-07-28 |  |  | Contract Price Original Scope [6768.05 SAR]; Labour [57.78 h]; FlowMeter Chambers [4] | 6,768.05 | 6,768.05 | RD25 |
| RSZone 1Road 25Irrigation NetworkA23000 |  | Zone 1 - Road 25 - Lateral Irrigation Network - FlowMeter Valves Champer - D.I Cover | 3d | 2026-11-09 | 2026-11-11 | RSZone 1Road 25Irrigation NetworkA23020 |  |  |  | 96.4d | 0d | Contract Price Original Scope [13536.1 SAR]; Labour [115.56 h]; FlowMeter Chambers [4] | 13,536.1 |  | RD25 |
| RSZone 1Road 25Irrigation NetworkA23030 |  | Zone 1 - Road 25 - Lateral Irrigation Network - FlowMeter Valves Champer - Backfilling | 2d | 2026-11-12 | 2026-11-14 | RSZone 1Road 25Irrigation NetworkA23000 |  |  |  | 96.4d | 95.76d | Contract Price Original Scope [6768.05 SAR]; Excavator Operator [20 h]; Compactor Operator [20 h]; Dump Truck Operator [20 h]; Water Truck Operator [20 h]; Labour [57.78 h]; FlowMeter Chambers [4] | 6,768.05 |  | RD25 |

| ID | WBS | Activity | Duration | Start | Finish | Predecessors | Complete | Planned start | Planned finish | Total float | Free float | Resources | Cost | Actual cost | MODON |
| --- | --- | --- | --- | --- | --- | --- | --- | --- | --- | --- | --- | --- | --- | --- | --- |
|  | 3 | **Bedding** |  | 2025-06-29 | 2025-07-01 |  |  |  |  |  |  |  |  |  |  |
| RSZone 1Road 25Irrigation NetworkA23040 |  | Zone 1 - Road 25 - Lateral Irrigation Network - Bedding - Bedding | 3d | 2025-06-29 A | 2025-07-01 A | RSZone 1Road 25Irrigation NetworkA23020 | 100% |  |  |  |  | Contract Price Original Scope [5536.88 SAR]; Compactor Operator [20 h]; Equipment Operator [20 h]; Water Truck Operator [20 h]; Labour [47.27 h]; Bedding [215] | 5,536.88 | 5,536.88 | RD25 |
|  | 4 | **Thrust Block** |  | 2025-06-29 | 2025-07-01 |  |  |  |  |  |  |  |  |  |  |
| RSZone 1Road 25Irrigation NetworkA23050 |  | Zone 1 - Road 25 - Lateral Irrigation Network - Thrust Block - Thrust Block | 3d | 2025-06-29 A | 2025-07-01 A | RSZone 1Road 25Irrigation NetworkA23040 | 100% |  |  |  |  | Contract Price Original Scope [16348.2 SAR]; Crane Operator [12 h]; Pump Operator [12 h]; Equipment Operator [12 h]; Labour [139.57 h]; Thrust Blocks [16] | 16,348.16 | 16,348.16 | RD25 |
|  | 1 | **Road Crossing** |  | 2026-05-04 | 2026-11-19 |  |  |  |  |  |  |  |  |  |  |
|  | 19 | **Rood Crossing GRP Selves 800 MM** |  | 2026-05-04 | 2026-11-19 |  |  |  |  |  |  |  |  |  |  |
| RSZone 1Road 25Road CrossingA21870-old |  | Zone 1 - Road 25 - Road Crossing - Rood Crossing GRP Selves 800 MM - Rood Crossing GRP Selves (old) | 155d | 2026-05-04 A | 2026-11-01 A | RSZone 1Road 24Road CrossingA21880-old | 100% |  |  |  |  | Contract Price Original Scope [50027.5 SAR]; Excavator Operator [70.35 h]; Crane Operator [70.35 h]; Equipment Operator [70.35 h]; Labour [427.11 h]; Road Crossing Sleeves 800 mm [58.16] | 50,027.54 | 50,027.54 | RD25 |
| RSZone 1Road 25Road CrossingA21870 |  | Zone 1 - Road 25 - Road Crossing - Rood Crossing GRP Selves 800 MM - Rood Crossing GRP Selves | 7.97d | 2026-11-11 | 2026-11-19 | RSZone 1Road 25Road CrossingA21870-old, RSZone 1Road 24Road CrossingA21880 |  |  |  | 0.21d | 0d | Contract Price Original Scope [56641 SAR]; Excavator Operator [79.65 h]; Crane Operator [79.65 h]; Equipment Operator [79.65 h]; Labour [483.57 h]; Road Crossing Sleeves 800 mm [65.84] | 56,640.98 |  | RD25 |
|  | 12 | **Telecom Network** |  | 2026-07-05 | 2026-11-22 |  |  |  |  |  |  |  |  |  |  |
|  | 3 | **Telecom Pipe** |  | 2026-07-05 | 2026-11-22 |  |  |  |  |  |  |  |  |  |  |
| RSZone 1Road 25Telecom NetworkA59520-old |  | Zone 1 - Road 25 - Telecom Network - Telecom Pipe - Excavation (old) | 102d | 2026-07-05 A | 2026-11-01 A | RSZone 1Road 25Telecom NetworkA59530-old | 100% |  |  |  |  | Contract Price Original Scope [146815 SAR]; Excavator Operator [22.17 h]; Dump Truck Operator [22.17 h]; Labour [1253.43 h]; Telecom Pipe [6812.56] | 146,815.1 | 146,815.1 | RD25 |
| RSZone 1Road 25Telecom NetworkA59530-old |  | Zone 1 - Road 25 - Telecom Network - Telecom Pipe - Concrete Pouring (old) | 100d | 2026-07-07 A | 2026-11-01 A | RSZone 1Road 24Telecom NetworkA59050-old | 100% |  |  |  |  | Contract Price Original Scope [1027111 SAR]; Crane Operator [9.6 h]; Pump Operator [9.6 h]; Equipment Operator [9.6 h]; Labour [8768.95 h]; Telecom Pipe [6808.62] | 1,027,111.32 | 1,027,111.32 | RD25 |
| RSZone 1Road 25Telecom NetworkA59550-old |  | Zone 1 - Road 25 - Telecom Network - Telecom Pipe - Backfilling (old) | 98d | 2026-07-09 A | 2026-11-01 A | RSZone 1Road 25Telecom NetworkA59520-old | 100% | 2026-07-09 | 2026-11-02 |  |  | Contract Price Original Scope [146870 SAR]; Excavator Operator [14.78 h]; Compactor Operator [14.78 h]; Dump Truck Operator [14.78 h]; Water Truck Operator [14.78 h]; Labour [1253.9 h]; Telecom Pipe [6815.12] | 146,870.3 | 146,870.3 | RD25 |
| RSZone 1Road 25Telecom NetworkA59530 |  | Zone 1 - Road 25 - Telecom Network - Telecom Pipe - Concrete Pouring | 1d | 2026-11-16 | 2026-11-17 | RSZone 1Road 25Telecom NetworkA59530-old, RSZone 1Road 24Telecom NetworkA59050 |  |  |  | 94.43d | 0d | Contract Price Original Scope [363769 SAR]; Crane Operator [3.4 h]; Pump Operator [3.4 h]; Equipment Operator [3.4 h]; Labour [3105.67 h]; Telecom Pipe [2411.38] | 363,768.59 |  | RD25 |
| RSZone 1Road 25Telecom NetworkA59520 |  | Zone 1 - Road 25 - Telecom Network - Telecom Pipe - Excavation | 1d | 2026-11-17 | 2026-11-18 | RSZone 1Road 25Telecom NetworkA59520-old, RSZone 1Road 25Telecom NetworkA59530 |  |  |  | 94.43d | 0d | Contract Price Original Scope [51882 SAR]; Excavator Operator [7.83 h]; Dump Truck Operator [7.83 h]; Labour [442.94 h]; Telecom Pipe [2407.44] | 51,882.03 |  | RD25 |
| RSZone 1Road 25Telecom NetworkA59550 |  | Zone 1 - Road 25 - Telecom Network - Telecom Pipe - Backfilling | 1d | 2026-11-18 | 2026-11-19 | RSZone 1Road 25Telecom NetworkA59550-old, RSZone 1Road 25Telecom NetworkA59520 |  |  |  | 94.43d | 0d | Contract Price Original Scope [51826.8 SAR]; Excavator Operator [5.22 h]; Compactor Operator [5.22 h]; Dump Truck Operator [5.22 h]; Water Truck Operator [5.22 h]; Labour [442.47 h]; Telecom Pipe [2404.88] | 51,826.83 |  | RD25 |
| RSZone 1Road 25Telecom NetworkA59540 |  | Zone 1 - Road 25 - Telecom Network - Telecom Pipe - Test | 2d | 2026-11-19 | 2026-11-22 | RSZone 1Road 25Telecom NetworkA59550 |  |  |  | 94.43d | 94.03d | Contract Price Original Scope [198697 SAR]; Pump Operator [20 h]; Equipment Operator [20 h]; Labour [1696.37 h]; Telecom Pipe [9220] | 198,697.13 |  | RD25 |
|  | 2 | **TELECOM MANHOLE** |  | 2026-07-19 | 2026-11-11 |  |  |  |  |  |  |  |  |  |  |
| RSZone 1Road 25Telecom NetworkA68120-old |  | Zone 1 - Road 25 - Telecom Network - TELECOM MANHOLE - Manhole Installation (old) | 90d | 2026-07-19 A | 2026-11-01 A | RSZone 1Road 24Telecom NetworkA68000-old | 100% |  |  |  |  | Contract Price Original Scope [812437 SAR]; Crane Operator [13.07 h]; Boom Truck Operator [13.07 h]; Equipment Operator [13.07 h]; Labour [6936.17 h]; Telecom Manhole [54.13] | 812,436.86 | 812,436.86 | RD25 |
| RSZone 1Road 25Telecom NetworkA68120 |  | Zone 1 - Road 25 - Telecom Network - TELECOM MANHOLE - Manhole Installation | 1d | 2026-11-11 | 2026-11-11 | RSZone 1Road 25Telecom NetworkA68120-old, RSZone 1Road 24Telecom NetworkA68000 |  |  |  | 76.4d | 0d | Contract Price Original Scope [58031.2 SAR]; Crane Operator [0.93 h]; Boom Truck Operator [0.93 h]; Equipment Operator [0.93 h]; Labour [495.44 h]; Telecom Manhole [3.87] | 58,031.2 |  | RD25 |
|  | 10 | **Secondary Irrigation Network** |  | 2026-11-11 | 2027-02-04 |  |  |  |  |  |  |  |  |  |  |
| RSZone 1LandscapeA88150 |  | Zone 1 - Road 25 - Secondary Irrigation Network - Atriplex canescens | 5d | 2026-11-11 | 2026-11-16 | RSZone 1Road 25Storm NetworkA53270 |  |  |  | 74.4d | 0d | Contract Price Original Scope [45446.2 SAR]; Excavator Operator [37 h]; Dump Truck Operator [37 h]; Equipment Operator [37 h]; Water Truck Operator [37 h]; Labour [388 h]; Landscape - Atriplex canescens [200] | 45,446.21 |  | RD25 |
| RSZone 1LandscapeA88160 |  | Zone 1 - Road 25 - Secondary Irrigation Network - Peltophorum Inerme 1 | 5d | 2026-11-17 | 2026-11-22 | RSZone 1LandscapeA88150 |  |  |  | 74.4d | 0d | Contract Price Original Scope [572038 SAR]; Excavator Operator [37 h]; Dump Truck Operator [37 h]; Equipment Operator [37 h]; Water Truck Operator [37 h]; Labour [4883.76 h]; Landscape - Peltophorum Inerme [162] | 572,037.93 |  | RD25 |
| RSZone 1LandscapeA88170 |  | Zone 1 - Road 25 - Secondary Irrigation Network - A 50 mm thick layer of gravel for green areas | 5d | 2026-11-23 | 2026-11-28 | RSZone 1LandscapeA88160 |  |  |  | 74.4d | 0d | Contract Price Original Scope [41338.1 SAR]; Excavator Operator [37 h]; Dump Truck Operator [37 h]; Equipment Operator [37 h]; Water Truck Operator [37 h]; Labour [352.92 h]; Landscape - A 50 mm thick layer of gravel for green areas [297.7] | 41,338.14 |  | RD25 |
| RSZone 1LandscapeA88180 |  | Zone 1 - Road 25 - Secondary Irrigation Network - Gravel bed with a thickness of 150 mm for the drainage netwo | 5d | 2026-11-29 | 2026-12-03 | RSZone 1LandscapeA88170 |  |  |  | 74.4d | 0d | Contract Price Original Scope [20029 SAR]; Excavator Operator [25 h]; Dump Truck Operator [25 h]; Equipment Operator [25 h]; Water Truck Operator [25 h]; Labour [171 h]; Landscape - Gravel bed with a thickness of 150 mm for the drainage netwo [144.24] | 20,028.97 |  | RD25 |
| RSZone 1LandscapeA88190 |  | Zone 1 - Road 25 - Secondary Irrigation Network - Cultivation soil | 5d | 2026-12-05 | 2026-12-09 | RSZone 1LandscapeA88180 |  |  |  | 74.4d | 0d | Contract Price Original Scope [39222.6 SAR]; Excavator Operator [37 h]; Dump Truck Operator [37 h]; Equipment Operator [37 h]; Water Truck Operator [37 h]; Labour [334.86 h]; Landscape - Cultivation soil [239] | 39,222.6 |  | RD25 |
| RSZone 1LandscapeA88200 |  | Zone 1 - Road 25 - Secondary Irrigation Network - Secondary Irrigation Network | 5d | 2026-12-10 | 2026-12-15 | RSZone 1LandscapeA88190 |  |  |  | 74.4d | 0d | Contract Price Original Scope [2304081 SAR]; Equipment Operator [37 h]; Labour [19671 h]; Landscape - Secondary Irrigation Network [4194.73] | 2,304,080.88 |  | RD25 |
| RSZone 1LandscapeA88140 |  | Zone 1 - Road 25 - Secondary Irrigation Network - Phoenix Dactylifera(PD) | 7d | 2026-12-16 | 2026-12-23 | RSZone 1LandscapeA95820 SS |  |  |  | 74.4d | 0d | Contract Price Original Scope [1106210 SAR]; Excavator Operator [38 h]; Dump Truck Operator [38 h]; Equipment Operator [38 h]; Water Truck Operator [38 h]; Labour [9444.24 h]; Landscape - Phoenix Dactylifera(PD) [258] | 1,106,209.53 |  | RD25 |
| RSZone 1LandscapeA95820 |  | Zone 1 - Road 25 - Secondary Irrigation Network - Semi-porous membrane | 5d | 2026-12-16 | 2026-12-21 | RSZone 1LandscapeA88200 |  |  |  | 74.4d | 0d | Contract Price Original Scope [41532.8 SAR]; Excavator Operator [37 h]; Dump Truck Operator [37 h]; Equipment Operator [37 h]; Water Truck Operator [37 h]; Labour [354.59 h]; Landscape - Semi-porous membrane [469.99] | 41,532.79 |  | RD25 |
| RSZone 1LandscapeA88210 |  | Zone 1 - Road 25 - Secondary Irrigation Network - Integrated maintenance and preservation in all aspects | 10d | 2026-12-24 | 2027-01-04 | RSZone 1LandscapeA88140 |  |  |  | 74.4d | 0d | Contract Price Original Scope [1875439 SAR]; Equipment Operator [42 h]; Labour [16011.5 h]; Landscape - Integrated maintenance and preservation in all aspects [826] | 1,875,438.85 |  | RD25 |
| RSZone 1LandscapeA95830 |  | Zone 1 - Road 25 - Secondary Irrigation Network - Peltophorum Inerme 2 | 8d | 2027-01-05 | 2027-01-13 | RSZone 1LandscapeA88210 |  |  |  | 74.4d | 0d | Contract Price Original Scope [161548 SAR]; Excavator Operator [38 h]; Dump Truck Operator [38 h]; Equipment Operator [38 h]; Water Truck Operator [38 h]; Labour [1379.21 h]; Landscape - Peltophorum Inerme [45.75] | 161,547.84 |  | RD25 |
| RSZone 1LandscapeA95840 |  | Zone 1 - Road 25 - Secondary Irrigation Network - Atriplex canescens 2Lt pot, 30-40cm height | 10d | 2027-01-14 | 2027-01-25 | RSZone 1LandscapeA95830 |  |  |  | 74.4d | 0d | Contract Price Original Scope [45446.3 SAR]; Excavator Operator [38 h]; Dump Truck Operator [38 h]; Equipment Operator [38 h]; Water Truck Operator [38 h]; Labour [388 h]; Landscape - Atriplex canescens 2Lt pot, 30-40cm height [200] | 45,446.3 |  | RD25 |
| RSZone 1LandscapeA95850 |  | Zone 1 - Road 25 - Secondary Irrigation Network - Phoenix Dactylifera(PD) (300-350 cm height) | 9d | 2027-01-26 | 2027-02-04 | Engineering Approval.8, RSZone 1LandscapeA95840 |  |  |  | 74.4d | 0d | Contract Price Original Scope [1236489 SAR]; Excavator Operator [38 h]; Dump Truck Operator [38 h]; Equipment Operator [38 h]; Water Truck Operator [38 h]; Labour [10556.5 h]; Landscape - Phoenix Dactylifera(PD) (300-350 cm height) [258] | 1,236,488.57 |  | RD25 |

| ID | WBS | Activity | Duration | Start | Finish | Predecessors | Complete | Planned start | Planned finish | Total float | Free float | Resources | Cost | Actual cost | MODON |
| --- | --- | --- | --- | --- | --- | --- | --- | --- | --- | --- | --- | --- | --- | --- | --- |
|  | 12 | **Road 26** |  | 2025-08-24 | 2027-01-23 |  |  |  |  |  |  |  |  |  |  |
|  | 2 | **Storm Network** |  | 2025-09-01 | 2027-01-23 |  |  |  |  |  |  |  |  |  |  |
|  | 10 | **Storm Pipes 400 MM** |  | 2025-09-01 | 2026-11-12 |  |  |  |  |  |  |  |  |  |  |
| RSZone 1Road 26Storm NetworkA34690 |  | Zone 1 - Road 26 - Storm Network - Storm Pipes 400 MM - Excavation | 3.9d | 2025-09-01 A | 2025-09-04 A | RSZone 1Road 25Storm NetworkA44400 | 100% |  |  |  |  | Contract Price Original Scope [1767.53 SAR]; Excavator Operator [40 h]; Dump Truck Operator [40 h]; Labour [15.09 h]; Storm Pipes 400 MM [32] | 1,767.53 | 1,767.53 | RD26 |
| RSZone 1Road 26Storm NetworkA34700 |  | Zone 1 - Road 26 - Storm Network - Storm Pipes 400 MM - Bedding | 2d | 2025-09-07 A | 2025-09-08 A | RSZone 1Road 26Storm NetworkA34690 | 100% |  |  |  |  | Contract Price Original Scope [5180.86 SAR]; Compactor Operator [20 h]; Equipment Operator [20 h]; Water Truck Operator [20 h]; Labour [44.23 h]; Storm Pipes 400 MM - Bedding [32] | 5,180.86 | 5,180.86 | RD26 |
| RSZone 1Road 26Storm NetworkA34710 |  | Zone 1 - Road 26 - Storm Network - Storm Pipes 400 MM - Pipe Installation | 5d | 2025-09-09 A | 2025-09-14 A | RSZone 1Road 26Storm NetworkA34700 | 100% |  |  |  |  | Contract Price Original Scope [12372.7 SAR]; Excavator Operator [40 h]; Crane Operator [40 h]; Equipment Operator [40 h]; Labour [105.63 h]; Storm Pipes 400 MM [32] | 12,372.73 | 12,372.73 | RD26 |
| RSZone 1Road 26Storm NetworkA34720 |  | Zone 1 - Road 26 - Storm Network - Storm Pipes 400 MM - Test | 2d | 2026-11-09 | 2026-11-10 | RSZone 1Road 26Storm NetworkA34710 |  |  |  | 121.4d | 0d | Contract Price Original Scope [1767.53 SAR]; Pump Operator [16 h]; Equipment Operator [16 h]; Labour [15.09 h]; Storm Pipes 400 MM [32] | 1,767.53 |  | RD26 |
| RSZone 1Road 26Storm NetworkA34730 |  | Zone 1 - Road 26 - Storm Network - Storm Pipes 400 MM - Backfilling | 2d | 2026-11-11 | 2026-11-12 | RSZone 1Road 26Storm NetworkA34720 |  |  |  | 121.4d | 107d | Contract Price Original Scope [1767.53 SAR]; Excavator Operator [16 h]; Compactor Operator [16 h]; Dump Truck Operator [16 h]; Water Truck Operator [16 h]; Labour [15.09 h]; Storm Pipes 400 MM [32] | 1,767.53 |  | RD26 |
|  | 4 | **Collection Pipes 150 MM** |  | 2025-09-07 | 2026-11-12 |  |  |  |  |  |  |  |  |  |  |
| RSZone 1Road 26Storm NetworkA35840 |  | Zone 1 - Road 26 - Storm Network - Collection Pipes 150 MM - Excavation | 4.9d | 2025-09-07 A | 2025-09-11 A | RSZone 1Road 26Storm NetworkA34710 | 100% |  |  |  |  | Contract Price Original Scope [3670.33 SAR]; Excavator Operator [30 h]; Dump Truck Operator [30 h]; Labour [31.34 h]; Collection Pipes 150 MM [768] | 3,670.33 | 3,670.33 | RD26 |
| RSZone 1Road 26Storm NetworkA35850 |  | Zone 1 - Road 26 - Storm Network - Collection Pipes 150 MM - Bedding | 3d | 2025-09-14 A | 2025-09-16 A | RSZone 1Road 26Storm NetworkA35840 | 100% |  |  |  |  | Contract Price Original Scope [1835.16 SAR]; Compactor Operator [20 h]; Equipment Operator [20 h]; Water Truck Operator [20 h]; Labour [15.67 h]; Collection Pipes 150 MM [768] | 1,835.16 | 1,835.16 | RD26 |
| RSZone 1Road 26Storm NetworkA35860 |  | Zone 1 - Road 26 - Storm Network - Collection Pipes 150 MM - Pipe Installation | 5d | 2025-09-17 A | 2025-09-23 A | RSZone 1Road 26Storm NetworkA35850 | 100% |  |  |  |  | Contract Price Original Scope [23857.1 SAR]; Excavator Operator [40 h]; Crane Operator [40 h]; Equipment Operator [40 h]; Labour [203.68 h]; Collection Pipes 150 MM [768] | 23,857.12 | 23,857.12 | RD26 |
| RSZone 1Road 26Storm NetworkA35870 |  | Zone 1 - Road 26 - Storm Network - Collection Pipes 150 MM - Test | 2d | 2026-11-09 | 2026-11-10 | RSZone 1Road 26Storm NetworkA35860 |  |  |  | 121.4d | 0d | Contract Price Original Scope [3670.33 SAR]; Pump Operator [20 h]; Equipment Operator [20 h]; Labour [31.34 h]; Collection Pipes 150 MM [768] | 3,670.33 |  | RD26 |
| RSZone 1Road 26Storm NetworkA35880 |  | Zone 1 - Road 26 - Storm Network - Collection Pipes 150 MM - Backfilling | 2d | 2026-11-11 | 2026-11-12 | RSZone 1Road 26Storm NetworkA35870 |  |  |  | 121.4d | 107d | Contract Price Original Scope [3670.33 SAR]; Excavator Operator [20 h]; Compactor Operator [20 h]; Dump Truck Operator [20 h]; Water Truck Operator [20 h]; Labour [31.34 h]; Collection Pipes 150 MM [768] | 3,670.33 |  | RD26 |
|  | 2 | **Gullies & Catchbasin Pipes** |  | 2026-05-27 | 2026-11-21 |  |  |  |  |  |  |  |  |  |  |
| RSZone 1Road 26Storm NetworkA38590-old |  | Zone 1 - Road 26 - Storm Network - Gullies & Catchbasin Pipes - Excavation (old) | 135d | 2026-05-27 A | 2026-11-01 A | RSZone 1Road 25Storm NetworkA44430-old | 100% |  |  |  |  | Contract Price Original Scope [7693.59 SAR]; Excavator Operator [22.33 h]; Dump Truck Operator [22.33 h]; Labour [65.68 h]; Gullies & Catchbasin Pipes (300 mm) [192.04] | 7,693.59 | 7,693.59 | RD26 |
| RSZone 1Road 26Storm NetworkA38600-old |  | Zone 1 - Road 26 - Storm Network - Gullies & Catchbasin Pipes - Bedding (old) | 134d | 2026-05-28 A | 2026-11-01 A | RSZone 1Road 26Storm NetworkA38590-old | 100% | 2026-05-28 | 2026-11-02 |  |  | Contract Price Original Scope [21929.3 SAR]; Compactor Operator [14.11 h]; Equipment Operator [14.11 h]; Water Truck Operator [14.11 h]; Labour [187.22 h]; Gullies & Catchbasin Pipes - Bedding [182.03] | 21,929.32 | 21,929.32 | RD26 |
| RSZone 1Road 26Storm NetworkA38610-old |  | Zone 1 - Road 26 - Storm Network - Gullies & Catchbasin Pipes - Pipe Installation (old) | 132d | 2026-05-31 A | 2026-11-01 A | RSZone 1Road 26Storm NetworkA38600-old | 100% |  |  |  |  | Contract Price Original Scope [51033.3 SAR]; Excavator Operator [28.21 h]; Crane Operator [28.21 h]; Equipment Operator [28.21 h]; Labour [435.7 h]; Gullies & Catchbasin Pipes (300 mm) [181.98] | 51,033.31 | 51,033.31 | RD26 |
| RSZone 1Road 26Storm NetworkA38590 |  | Zone 1 - Road 26 - Storm Network - Gullies & Catchbasin Pipes - Excavation | 1.28d | 2026-11-12 | 2026-11-14 | RSZone 1Road 26Storm NetworkA38590-old, RSZone 1Road 25Storm NetworkA44430 |  |  |  | 94.71d | 0d | Contract Price Original Scope [2642.62 SAR]; Excavator Operator [7.67 h]; Dump Truck Operator [7.67 h]; Labour [22.56 h]; Gullies & Catchbasin Pipes (300 mm) [65.96] | 2,642.62 |  | RD26 |
| RSZone 1Road 26Storm NetworkA38600 |  | Zone 1 - Road 26 - Storm Network - Gullies & Catchbasin Pipes - Bedding | 1d | 2026-11-14 | 2026-11-15 | RSZone 1Road 26Storm NetworkA38600-old, RSZone 1Road 26Storm NetworkA38590 |  |  |  | 94.71d | 0d | Contract Price Original Scope [9151.6 SAR]; Compactor Operator [5.89 h]; Equipment Operator [5.89 h]; Water Truck Operator [5.89 h]; Labour [78.13 h]; Gullies & Catchbasin Pipes - Bedding [75.97] | 9,151.6 |  | RD26 |
| RSZone 1Road 26Storm NetworkA38610 |  | Zone 1 - Road 26 - Storm Network - Gullies & Catchbasin Pipes - Pipe Installation | 1.47d | 2026-11-15 | 2026-11-16 | RSZone 1Road 26Storm NetworkA38610-old, RSZone 1Road 26Storm NetworkA38600 |  |  |  | 94.71d | 0d | Contract Price Original Scope [21320.2 SAR]; Excavator Operator [11.79 h]; Crane Operator [11.79 h]; Equipment Operator [11.79 h]; Labour [182.02 h]; Gullies & Catchbasin Pipes (300 mm) [76.02] | 21,320.15 |  | RD26 |
| RSZone 1Road 26Storm NetworkA38620 |  | Zone 1 - Road 26 - Storm Network - Gullies & Catchbasin Pipes - Test | 2d | 2026-11-16 | 2026-11-18 | RSZone 1Road 26Storm NetworkA38610, RSZone 1Road 26Storm NetworkA38590, RSZone 1Road 26Storm NetworkA38600 |  |  |  | 114.54d | 0d | Contract Price Original Scope [10336.2 SAR]; Pump Operator [20 h]; Equipment Operator [20 h]; Labour [88.25 h]; Gullies & Catchbasin Pipes (300 mm) [258] | 10,336.21 |  | RD26 |
| RSZone 1Road 26Storm NetworkA38630 |  | Zone 1 - Road 26 - Storm Network - Gullies & Catchbasin Pipes - Backfilling | 2d | 2026-11-18 | 2026-11-21 | RSZone 1Road 26Storm NetworkA38620 |  |  |  | 114.54d | 100.14d | Contract Price Original Scope [10336.2 SAR]; Excavator Operator [20 h]; Compactor Operator [20 h]; Dump Truck Operator [20 h]; Water Truck Operator [20 h]; Labour [88.25 h]; Gullies & Catchbasin Pipes (300 mm) [258] | 10,336.21 |  | RD26 |
|  | 7 | **Perforated 160 mm** |  | 2025-10-06 | 2026-11-10 |  |  |  |  |  |  |  |  |  |  |
| RSZone 1Road 26Storm NetworkA49290 |  | Zone 1 - Road 26 - Storm Network - Perforated 160 mm - Excavation | 6d | 2025-10-06 A | 2025-10-12 A | RSZone 1Road 26Storm NetworkA35860 | 100% |  |  |  |  | Contract Price Original Scope [22983.8 SAR]; Excavator Operator [30 h]; Dump Truck Operator [30 h]; Labour [196.22 h]; Perforated 160 mm [1438] | 22,983.79 | 22,983.79 | RD26 |
| RSZone 1Road 26Storm NetworkA49300 |  | Zone 1 - Road 26 - Storm Network - Perforated 160 mm - Bedding | 2d | 2025-10-13 A | 2025-10-14 A | RSZone 1Road 26Storm NetworkA49290 | 100% |  |  |  |  | Contract Price Original Scope [11491.9 SAR]; Compactor Operator [20 h]; Equipment Operator [20 h]; Water Truck Operator [20 h]; Labour [98.11 h]; Perforated 160 mm [1438] | 11,491.89 | 11,491.89 | RD26 |
| RSZone 1Road 26Storm NetworkA49310 |  | Zone 1 - Road 26 - Storm Network - Perforated 160 mm - Pipe Installation | 2.9d | 2025-10-14 A | 2025-10-16 A | RSZone 1Road 26Storm NetworkA49300 | 100% |  |  |  |  | Contract Price Original Scope [149395 SAR]; Excavator Operator [40 h]; Crane Operator [40 h]; Equipment Operator [40 h]; Labour [1275.45 h]; Perforated 160 mm [1438] | 149,394.63 | 149,394.63 | RD26 |
| RSZone 1Road 26Storm NetworkA49330 |  | Zone 1 - Road 26 - Storm Network - Perforated 160 mm - Backfilling | 3d | 2025-10-19 A | 2025-10-21 A | RSZone 1Road 26Storm NetworkA49310 | 100% |  |  |  |  | Contract Price Original Scope [22983.8 SAR]; Excavator Operator [20 h]; Compactor Operator [20 h]; Dump Truck Operator [20 h]; Water Truck Operator [20 h]; Labour [196.22 h]; Perforated 160 mm [1438] | 22,983.79 | 22,983.79 | RD26 |
| RSZone 1Road 26Storm NetworkA49320 |  | Zone 1 - Road 26 - Storm Network - Perforated 160 mm - Test | 2d | 2026-11-09 | 2026-11-10 | RSZone 1Road 26Storm NetworkA49330 |  |  |  | 123.4d | 109d | Contract Price Original Scope [22983.8 SAR]; Pump Operator [20 h]; Equipment Operator [20 h]; Labour [196.22 h]; Perforated 160 mm [1438] | 22,983.79 |  | RD26 |

| ID | WBS | Activity | Duration | Start | Finish | Predecessors | Complete | Planned start | Planned finish | Total float | Free float | Resources | Cost | Actual cost | MODON |
| --- | --- | --- | --- | --- | --- | --- | --- | --- | --- | --- | --- | --- | --- | --- | --- |
|  | 9 | **Collection Chamber** |  | 2025-11-09 | 2026-11-22 |  |  |  |  |  |  |  |  |  |  |
| RSZone 1Road 26Storm NetworkA45940 |  | Zone 1 - Road 26 - Storm Network - Collection Chamber - Excavation | 3d | 2025-11-09 A | 2025-11-11 A | RSZone 1Road 26Storm NetworkA49330 | 100% |  |  |  |  | Contract Price Original Scope [34878.7 SAR]; Excavator Operator [30 h]; Dump Truck Operator [30 h]; Labour [297.78 h]; Collection Chamber [45] | 34,878.71 | 34,878.71 | RD26 |
| RSZone 1Road 26Storm NetworkA45950 |  | Zone 1 - Road 26 - Storm Network - Collection Chamber - Installation | 4d | 2025-11-12 A | 2025-11-16 A | RSZone 1Road 26Storm NetworkA45940 | 100% |  |  |  |  | Contract Price Original Scope [139515 SAR]; Crane Operator [7 h]; Boom Truck Operator [7 h]; Equipment Operator [7 h]; Labour [1191.11 h]; Collection Chamber [45] | 139,514.82 | 139,514.82 | RD26 |
| RSZone 1Road 26Storm NetworkA45980 |  | Zone 1 - Road 26 - Storm Network - Collection Chamber - Backfilling | 5d | 2025-11-18 A | 2025-11-23 A | RSZone 1Road 26Storm NetworkA45950 | 100% |  |  |  |  | Contract Price Original Scope [11626.2 SAR]; Excavator Operator [20 h]; Compactor Operator [20 h]; Dump Truck Operator [20 h]; Water Truck Operator [20 h]; Labour [99.26 h]; Collection Chamber [45] | 11,626.24 | 11,626.24 | RD26 |
| RSZone 1Road 26Storm NetworkA45960-old |  | Zone 1 - Road 26 - Storm Network - Collection Chamber - D.I (old) | 130d | 2026-06-02 A | 2026-11-01 A | RSZone 1Road 26Storm NetworkA45980, RSZone 1Road 26Storm NetworkA38610-old | 100% |  |  |  |  | Contract Price Original Scope [3617.05 SAR]; Crane Operator [1.09 h]; Boom Truck Operator [1.09 h]; Equipment Operator [1.09 h]; Labour [30.88 h]; Collection Chamber [7] | 3,617.05 | 3,617.05 | RD26 |
| RSZone 1Road 26Storm NetworkA45960 |  | Zone 1 - Road 26 - Storm Network - Collection Chamber - D.I | 2.53d | 2026-11-16 | 2026-11-19 | RSZone 1Road 26Storm NetworkA45960-old, RSZone 1Road 26Storm NetworkA38610 |  |  |  | 94.71d | 0d | Contract Price Original Scope [19635.4 SAR]; Crane Operator [5.91 h]; Boom Truck Operator [5.91 h]; Equipment Operator [5.91 h]; Labour [167.64 h]; Collection Chamber [38] | 19,635.42 |  | RD26 |
| RSZone 1Road 26Storm NetworkA45970 |  | Zone 1 - Road 26 - Storm Network - Collection Chamber - Inner Isolation | 2d | 2026-11-19 | 2026-11-22 | RSZone 1Road 26Storm NetworkA45960 |  |  |  | 114d | 99.6d | Contract Price Original Scope [23252.5 SAR]; Equipment Operator [20 h]; Labour [198.52 h]; Collection Chamber [45] | 23,252.47 |  | RD26 |
|  | 5 | **Catch Basins** |  | 2025-09-29 | 2026-11-16 |  |  |  |  |  |  |  |  |  |  |
| RSZone 1Road 26Storm NetworkA43640 |  | Zone 1 - Road 26 - Storm Network - Catch Basins - Excavation | 6d | 2025-09-29 A | 2025-10-05 A | RSZone 1Road 26Storm NetworkA45980 | 100% |  |  |  |  | Contract Price Original Scope [27549.9 SAR]; Excavator Operator [30 h]; Dump Truck Operator [30 h]; Labour [235.21 h]; Catch Basins [8] | 27,549.88 | 27,549.88 | RD26 |
| RSZone 1Road 26Storm NetworkA43650 |  | Zone 1 - Road 26 - Storm Network - Catch Basins - Installation | 2d | 2025-10-06 A | 2025-10-07 A | RSZone 1Road 26Storm NetworkA43640 | 100% |  |  |  |  | Contract Price Original Scope [110200 SAR]; Crane Operator [7 h]; Boom Truck Operator [7 h]; Equipment Operator [7 h]; Labour [940.83 h]; Catch Basins [8] | 110,199.54 | 110,199.54 | RD26 |
| RSZone 1Road 26Storm NetworkA43670 |  | Zone 1 - Road 26 - Storm Network - Catch Basins - Inner Isolation | 2d | 2026-11-09 | 2026-11-10 | RSZone 1Road 26Storm NetworkA43650 |  |  |  | 118.4d | 0d | Contract Price Original Scope [18366.6 SAR]; Equipment Operator [20 h]; Labour [156.8 h]; Catch Basins [8] | 18,366.59 |  | RD26 |
| RSZone 1Road 26Storm NetworkA43660 |  | Zone 1 - Road 26 - Storm Network - Catch Basins - D.I | 3d | 2026-11-11 | 2026-11-14 | RSZone 1Road 26Storm NetworkA43670 |  |  |  | 118.4d | 0d | Contract Price Original Scope [18366.6 SAR]; Crane Operator [7 h]; Boom Truck Operator [7 h]; Equipment Operator [7 h]; Labour [156.8 h]; Catch Basins [8] | 18,366.59 |  | RD26 |
| RSZone 1Road 26Storm NetworkA43680 |  | Zone 1 - Road 26 - Storm Network - Catch Basins - Backfilling | 2d | 2026-11-15 | 2026-11-16 | RSZone 1Road 26Storm NetworkA43660 |  |  |  | 118.4d | 104d | Contract Price Original Scope [9183.29 SAR]; Excavator Operator [20 h]; Compactor Operator [20 h]; Dump Truck Operator [20 h]; Water Truck Operator [20 h]; Labour [78.4 h]; Catch Basins [8] | 9,183.29 |  | RD26 |
|  | 3 | **Gully outfalls** |  | 2025-09-23 | 2026-11-16 |  |  |  |  |  |  |  |  |  |  |
| RSZone 1Road 26Storm NetworkA42390 |  | Zone 1 - Road 26 - Storm Network - Gully outfalls - Excavation | 2.9d | 2025-09-23 A | 2025-09-25 A | RSZone 1Road 26Storm NetworkA43650 | 100% |  |  |  |  | Contract Price Original Scope [16074 SAR]; Excavator Operator [30 h]; Dump Truck Operator [30 h]; Labour [137.23 h]; Gully outfalls [16] | 16,074.05 | 16,074.05 | RD26 |
| RSZone 1Road 26Storm NetworkA42400 |  | Zone 1 - Road 26 - Storm Network - Gully outfalls - Installation | 2d | 2025-09-28 A | 2025-09-29 A | RSZone 1Road 26Storm NetworkA42390 | 100% |  |  |  |  | Contract Price Original Scope [64296.2 SAR]; Crane Operator [7 h]; Equipment Operator [7 h]; Labour [548.93 h]; Gully outfalls [16] | 64,296.21 | 64,296.21 | RD26 |
| RSZone 1Road 26Storm NetworkA42420 |  | Zone 1 - Road 26 - Storm Network - Gully outfalls - Inner Isolation | 2d | 2026-11-09 | 2026-11-10 | RSZone 1Road 26Storm NetworkA42400 |  |  |  | 118.4d | 0d | Contract Price Original Scope [10716 SAR]; Equipment Operator [20 h]; Labour [91.49 h]; Gully outfalls [16] | 10,716.04 |  | RD26 |
| RSZone 1Road 26Storm NetworkA42410 |  | Zone 1 - Road 26 - Storm Network - Gully outfalls - D.I | 3d | 2026-11-11 | 2026-11-14 | RSZone 1Road 26Storm NetworkA42420 |  |  |  | 118.4d | 0d | Contract Price Original Scope [10716 SAR]; Crane Operator [7 h]; Boom Truck Operator [7 h]; Equipment Operator [7 h]; Labour [91.49 h]; Gully outfalls [16] | 10,716.04 |  | RD26 |
| RSZone 1Road 26Storm NetworkA42430 |  | Zone 1 - Road 26 - Storm Network - Gully outfalls - Backfilling | 2d | 2026-11-15 | 2026-11-16 | RSZone 1Road 26Storm NetworkA42410 |  |  |  | 118.4d | 104d | Contract Price Original Scope [5358.02 SAR]; Excavator Operator [20 h]; Compactor Operator [20 h]; Dump Truck Operator [20 h]; Water Truck Operator [20 h]; Labour [45.74 h]; Gully outfalls [16] | 5,358.02 |  | RD26 |
|  | 8 | **Manhole** |  | 2025-09-11 | 2026-11-30 |  |  |  |  |  |  |  |  |  |  |
| RSZone 1Road 26Storm NetworkA41140 |  | Zone 1 - Road 26 - Storm Network - Manhole - Excavation | 4d | 2025-09-11 A | 2025-09-15 A | RSZone 1Road 26Storm NetworkA42400 | 100% | 2025-09-11 | 2025-09-16 |  |  | Contract Price Original Scope [9722.49 SAR]; Excavator Operator [30 h]; Dump Truck Operator [30 h]; Labour [83.01 h]; Manholes GRP (new + DI cover only) [7] | 9,722.49 | 9,722.49 | RD26 |
| RSZone 1Road 26Storm NetworkA41150 |  | Zone 1 - Road 26 - Storm Network - Manhole - FOOTING | 5d | 2025-09-16 A | 2025-09-22 A | RSZone 1Road 26Storm NetworkA41140 | 100% | 2025-09-16 | 2025-09-21 |  |  | Contract Price Original Scope [58334.9 SAR]; Crane Operator [7 h]; Pump Operator [7 h]; Equipment Operator [7 h]; Labour [498.03 h]; Manholes GRP (new + DI cover only) [7] | 58,334.92 | 58,334.92 | RD26 |
| RSZone 1Road 26Storm NetworkA41160 |  | Zone 1 - Road 26 - Storm Network - Manhole - MH INSTALLATION | 2.9d | 2025-09-23 A | 2025-09-25 A | RSZone 1Road 26Storm NetworkA41150 | 100% |  |  |  |  | Contract Price Original Scope [58334.9 SAR]; Crane Operator [7 h]; Boom Truck Operator [7 h]; Equipment Operator [7 h]; Labour [498.03 h]; Manholes GRP (new + DI cover only) [7] | 58,334.92 | 58,334.92 | RD26 |
| RSZone 1Road 26Storm NetworkA41170 |  | Zone 1 - Road 26 - Storm Network - Manhole - CONCRETE SLAB | 10d | 2026-11-09 | 2026-11-19 | RSZone 1Road 26Storm NetworkA41160 |  |  |  | 14.4d | 0d | Contract Price Original Scope [9722.49 SAR]; Crane Operator [7 h]; Pump Operator [7 h]; Equipment Operator [7 h]; Labour [83.01 h]; Manholes GRP (new + DI cover only) [7] | 9,722.49 |  | RD26 |
| RSZone 1Road 26Storm NetworkA41180 |  | Zone 1 - Road 26 - Storm Network - Manhole - COVER INSTALLATION | 5d | 2026-11-21 | 2026-11-25 | RSZone 1Road 26Storm NetworkA41170 |  |  |  | 14.4d | 0d | Contract Price Original Scope [55557.1 SAR]; Crane Operator [7 h]; Boom Truck Operator [7 h]; Equipment Operator [7 h]; Labour [474.32 h]; Manholes GRP (new + DI cover only) [20] | 55,557.07 |  | RD26 |
| RSZone 1Road 26Storm NetworkA41190 |  | Zone 1 - Road 26 - Storm Network - Manhole - TEST | 2d | 2026-11-26 | 2026-11-28 | RSZone 1Road 26Storm NetworkA41180 |  |  |  | 14.4d | 0d | Contract Price Original Scope [19445 SAR]; Pump Operator [20 h]; Equipment Operator [20 h]; Labour [166.01 h]; Manholes GRP (new + DI cover only) [7] | 19,444.97 |  | RD26 |
| RSZone 1Road 26Storm NetworkA41200 |  | Zone 1 - Road 26 - Storm Network - Manhole - BACKFILLING | 2d | 2026-11-29 | 2026-11-30 | RSZone 1Road 26Storm NetworkA41190 |  |  |  | 14.4d | 0d | Contract Price Original Scope [19445 SAR]; Excavator Operator [20 h]; Compactor Operator [20 h]; Dump Truck Operator [20 h]; Water Truck Operator [20 h]; Labour [166.01 h]; Manholes GRP (new + DI cover only) [7] | 19,444.97 |  | RD26 |

| ID | WBS | Activity | Duration | Start | Finish | Predecessors | Complete | Total float | Free float | Resources | Cost | Actual cost | MODON |
| --- | --- | --- | --- | --- | --- | --- | --- | --- | --- | --- | --- | --- | --- |
|  | 6 | **Box Culvert** |  | 2026-12-01 | 2026-12-26 |  |  |  |  |  |  |  |  |
| RSZone 1Road 26Storm NetworkA39090 |  | Zone 1 - Road 26 - Storm Network - Box Culvert - Excavation | 5d | 2026-12-01 | 2026-12-06 | RSZone 1Road 26Storm NetworkA41200 |  | 14.4d | 0d | Contract Price Original Scope [64214.2 SAR]; Excavator Operator [30 h]; Dump Truck Operator [30 h]; Labour [548.23 h]; Box Culvert (all sizes/depths) [149] | 64,214.22 |  | RD26 |
| RSZone 1Road 26Storm NetworkA39100 |  | Zone 1 - Road 26 - Storm Network - Box Culvert - Installation | 3d | 2026-12-07 | 2026-12-09 | RSZone 1Road 26Storm NetworkA39090 |  | 14.4d | 0d | Contract Price Original Scope [321071 SAR]; Crane Operator [6 h]; Equipment Operator [6 h]; Labour [2741.14 h]; Box Culvert (all sizes/depths) [149] | 321,071.11 |  | RD26 |
| RSZone 1Road 26Storm NetworkA39110 |  | Zone 1 - Road 26 - Storm Network - Box Culvert - SLAB INSTALLATIO | 10d | 2026-12-10 | 2026-12-21 | RSZone 1Road 26Storm NetworkA39100 |  | 14.4d | 0d | Contract Price Original Scope [128428 SAR]; Crane Operator [6 h]; Pump Operator [6 h]; Equipment Operator [6 h]; Labour [1096.46 h]; Box Culvert (all sizes/depths) [149] | 128,428.44 |  | RD26 |
| RSZone 1Road 26Storm NetworkA39120 |  | Zone 1 - Road 26 - Storm Network - Box Culvert - TEST | 2d | 2026-12-22 | 2026-12-23 | RSZone 1Road 26Storm NetworkA39110 |  | 14.4d | 0d | Contract Price Original Scope [64214.2 SAR]; Pump Operator [20 h]; Equipment Operator [20 h]; Labour [548.23 h]; Box Culvert (all sizes/depths) [149] | 64,214.22 |  | RD26 |
| RSZone 1Road 26Storm NetworkA39130 |  | Zone 1 - Road 26 - Storm Network - Box Culvert - BACKFILLING | 2d | 2026-12-24 | 2026-12-26 | RSZone 1Road 26Storm NetworkA39120 |  | 14.4d | 0d | Contract Price Original Scope [64214.2 SAR]; Excavator Operator [20 h]; Compactor Operator [20 h]; Dump Truck Operator [20 h]; Water Truck Operator [20 h]; Labour [548.23 h]; Box Culvert (all sizes/depths) [149] | 64,214.22 |  | RD26 |
|  | 11 | **Gravel and Geotextile** |  | 2025-10-26 | 2025-10-28 |  |  |  |  |  |  |  |  |
| RSZone 1Road 26Storm NetworkA52180 |  | Zone 1 - Road 26 - Storm Network - Gravel and Geotextile - Installation | 3d | 2025-10-26 A | 2025-10-28 A | RSZone 1Road 26Storm NetworkA41160 | 100% |  |  | Contract Price Original Scope [168675 SAR]; Excavator Operator [7 h]; Dump Truck Operator [7 h]; Equipment Operator [7 h]; Water Truck Operator [7 h]; Labour [1440.06 h]; Gravel and Geotextile [1438] | 168,674.9 | 168,674.9 | RD26 |
|  | 1 | **Concrete Manholes on Box Culvert** |  | 2026-12-27 | 2027-01-23 |  |  |  |  |  |  |  |  |
| RSZone 1Road 26Storm NetworkA94630 |  | Zone 1 - Road 26 - Storm Network - Concrete Manholes on Box Culvert - Excavation | 3d | 2026-12-27 | 2026-12-29 | RSZone 1Road 26Storm NetworkA39090, RSZone 1Road 26Storm NetworkA39130 |  | 14.4d | 0d | Contract Price Original Scope [3767.39 SAR]; Labour [32.16 h]; Concrete Manholes on Box Culvert - Manhole with a depth of 3.0-3.5 m [3] | 3,767.39 |  | RD26 |
| RSZone 1Road 26Storm NetworkA94650 |  | Zone 1 - Road 26 - Storm Network - Concrete Manholes on Box Culvert - Slab | 5d | 2026-12-30 | 2027-01-04 | RSZone 1Road 26Storm NetworkA94630 |  | 14.4d | 0d | Contract Price Original Scope [26371.7 SAR]; Labour [225.15 h]; Concrete Manholes on Box Culvert - Manhole with a depth of 3.0-3.5 m [3] | 26,371.72 |  | RD26 |
| RSZone 1Road 26Storm NetworkA94640 |  | Zone 1 - Road 26 - Storm Network - Concrete Manholes on Box Culvert - Walls | 5d | 2027-01-05 | 2027-01-10 | RSZone 1Road 26Storm NetworkA94650 |  | 14.4d | 0d | Contract Price Original Scope [15069.6 SAR]; Labour [128.66 h]; Concrete Manholes on Box Culvert - Manhole with a depth of 3.0-3.5 m [3] | 15,069.56 |  | RD26 |
| RSZone 1Road 26Storm NetworkA94670 |  | Zone 1 - Road 26 - Storm Network - Concrete Manholes on Box Culvert - Internal Isolation | 3d | 2027-01-11 | 2027-01-13 | RSZone 1Road 26Storm NetworkA94640 |  | 14.4d | 0d | Contract Price Original Scope [3767.39 SAR]; Labour [32.16 h]; Concrete Manholes on Box Culvert - Manhole with a depth of 3.0-3.5 m [3] | 3,767.39 |  | RD26 |
| RSZone 1Road 26Storm NetworkA94660 |  | Zone 1 - Road 26 - Storm Network - Concrete Manholes on Box Culvert - D.I Cover | 3d | 2027-01-14 | 2027-01-17 | RSZone 1Road 26Storm NetworkA94670 |  | 14.4d | 0d | Contract Price Original Scope [7534.78 SAR]; Labour [64.33 h]; Concrete Manholes on Box Culvert - Manhole with a depth of 3.0-3.5 m [12] | 7,534.78 |  | RD26 |
| RSZone 1Road 26Storm NetworkA94680 |  | Zone 1 - Road 26 - Storm Network - Concrete Manholes on Box Culvert - External Isolation | 3d | 2027-01-18 | 2027-01-20 | RSZone 1Road 26Storm NetworkA94660 |  | 14.4d | 0d | Contract Price Original Scope [3767.39 SAR]; Labour [32.16 h]; Concrete Manholes on Box Culvert - Manhole with a depth of 3.0-3.5 m [3] | 3,767.39 |  | RD26 |
| RSZone 1Road 26Storm NetworkA94690 |  | Zone 1 - Road 26 - Storm Network - Concrete Manholes on Box Culvert - Backfilling | 2d | 2027-01-21 | 2027-01-23 | RSZone 1Road 26Storm NetworkA94680, RSZone 1Road 26Storm NetworkA39130 |  | 14.4d | 0d | Contract Price Original Scope [3767.39 SAR]; Excavator Operator [20 h]; Compactor Operator [20 h]; Dump Truck Operator [20 h]; Water Truck Operator [20 h]; Labour [32.16 h]; Concrete Manholes on Box Culvert - Manhole with a depth of 3.0-3.5 m [3] | 3,767.39 |  | RD26 |
|  | 1 | **Sewage Network** |  | 2025-08-24 | 2026-11-16 |  |  |  |  |  |  |  |  |
|  | 10 | **Manhole** |  | 2025-08-24 | 2026-11-16 |  |  |  |  |  |  |  |  |
| RSZone 1Road 26Sewage NetworkA33810 |  | Zone 1 - Road 26 - Sewage Network - Manhole - Excavation | 3d | 2025-08-24 A | 2025-08-26 A | RSZone 1Road 24Sewage NetworkA33660 | 100% |  |  | Contract Price Original Scope [7601.13 SAR]; Excavator Operator [30 h]; Dump Truck Operator [30 h]; Labour [64.89 h]; Manholes (all depths, GRP) [4] | 7,601.13 | 7,601.13 | RD26 |
| RSZone 1Road 26Sewage NetworkA33820 |  | Zone 1 - Road 26 - Sewage Network - Manhole - FOOTING | 5d | 2025-08-27 A | 2025-09-01 A | RSZone 1Road 26Sewage NetworkA33810 | 100% |  |  | Contract Price Original Scope [45606.8 SAR]; Crane Operator [5 h]; Pump Operator [5 h]; Equipment Operator [5 h]; Labour [389.37 h]; Manholes (all depths, GRP) [4] | 45,606.79 | 45,606.79 | RD26 |
| RSZone 1Road 26Sewage NetworkA33830 |  | Zone 1 - Road 26 - Sewage Network - Manhole - MH INSTALLATION | 2.9d | 2025-09-02 A | 2025-09-04 A | RSZone 1Road 26Sewage NetworkA33820 | 100% |  |  | Contract Price Original Scope [53207.9 SAR]; Crane Operator [5 h]; Boom Truck Operator [5 h]; Equipment Operator [5 h]; Labour [454.26 h]; Manholes (all depths, GRP) [4] | 53,207.92 | 53,207.92 | RD26 |
| RSZone 1Road 26Sewage NetworkA33840 |  | Zone 1 - Road 26 - Sewage Network - Manhole - COVER INSTALLATION | 3d | 2026-11-09 | 2026-11-11 | RSZone 1Road 26Sewage NetworkA33830 |  | 98.4d | 0d | Contract Price Original Scope [41806.2 SAR]; Crane Operator [5 h]; Boom Truck Operator [5 h]; Equipment Operator [5 h]; Labour [356.92 h]; Manholes (all depths, GRP) [11] | 41,806.22 |  | RD26 |
| RSZone 1Road 26Sewage NetworkA33850 |  | Zone 1 - Road 26 - Sewage Network - Manhole - TEST | 2d | 2026-11-12 | 2026-11-14 | RSZone 1Road 26Sewage NetworkA33840 |  | 98.4d | 0d | Contract Price Original Scope [15202.3 SAR]; Pump Operator [20 h]; Equipment Operator [20 h]; Labour [129.79 h]; Manholes (all depths, GRP) [4] | 15,202.26 |  | RD26 |
| RSZone 1Road 26Sewage NetworkA33860 |  | Zone 1 - Road 26 - Sewage Network - Manhole - BACKFILLING | 2d | 2026-11-15 | 2026-11-16 | RSZone 1Road 26Sewage NetworkA33850 |  | 98.4d | 97.8d | Contract Price Original Scope [15202.3 SAR]; Excavator Operator [20 h]; Compactor Operator [20 h]; Dump Truck Operator [20 h]; Water Truck Operator [20 h]; Labour [129.79 h]; Manholes (all depths, GRP) [4] | 15,202.26 |  | RD26 |

| ID | WBS | Activity | Duration | Start | Finish | Predecessors | Complete | Planned start | Planned finish | Total float | Free float | Resources | Cost | Actual cost | MODON |
| --- | --- | --- | --- | --- | --- | --- | --- | --- | --- | --- | --- | --- | --- | --- | --- |
|  | 8 | **Ponds** |  | 2025-09-25 | 2027-01-07 |  |  |  |  |  |  |  |  |  |  |
| RSZone 1Road 26PondsA29220 |  | Zone 1 - Road 26 - Sewage Network - Ponds - Clearnce | 4d | 2025-09-25 A | 2025-09-29 A | RSZone 1Road 26Sewage NetworkA33830 | 100% | 2025-09-25 | 2025-09-30 |  |  | Contract Price Original Scope [324845 SAR]; Excavator Operator [57 h]; Dump Truck Operator [57 h]; Equipment Operator [57 h]; Labour [2773.36 h]; Ponds - Clearnce [119869] | 324,844.99 | 324,844.99 | RD26 |
| RSZone 1Road 26PondsA29250 |  | Zone 1 - Road 26 - Sewage Network - Ponds - Filter | 3.9d | 2025-10-06 A | 2025-10-09 A | RSZone 1Road 26PondsA29220 | 100% |  |  |  |  | Contract Price Original Scope [33757.1 SAR]; Equipment Operator [55 h]; Labour [288.2 h]; Ponds - Filter [196] | 33,757.08 | 33,757.08 | RD26 |
| RSZone 1Road 26PondsA29260 |  | Zone 1 - Road 26 - Sewage Network - Ponds - HDPE geomembrane waterproofing | 3d | 2025-10-12 A | 2025-10-14 A | RSZone 1Road 26PondsA29250 | 100% |  |  |  |  | Contract Price Original Scope [218639 SAR]; Equipment Operator [109 h]; Labour [1866.63 h]; Ponds - HDPE geomembrane waterproofing [4575] | 218,639.25 | 218,639.25 | RD26 |
| RSZone 1Road 26PondsA29270 |  | Zone 1 - Road 26 - Sewage Network - Ponds - Siphon pipework | 5d | 2025-10-15 A | 2025-10-20 A | RSZone 1Road 26PondsA29260 | 100% |  |  |  |  | Contract Price Original Scope [44225.3 SAR]; Excavator Operator [55 h]; Crane Operator [55 h]; Equipment Operator [55 h]; Labour [377.57 h]; Ponds - Siphon pipework [2] | 44,225.3 | 44,225.3 | RD26 |
| RSZone 1Road 26PondsA29280 |  | Zone 1 - Road 26 - Sewage Network - Ponds - blinding & Walls Concerete | 2.9d | 2025-10-21 A | 2025-10-23 A | RSZone 1Road 26PondsA29270 | 100% |  |  |  |  | Contract Price Original Scope [4073.8 SAR]; Crane Operator [55 h]; Pump Operator [55 h]; Equipment Operator [55 h]; Labour [34.78 h]; Ponds - blinding & Walls Concerete [4] | 4,073.8 | 4,073.8 | RD26 |
| RSZone 1Road 26PondsA29290 |  | Zone 1 - Road 26 - Sewage Network - Ponds - RAFT Concerete | 3d | 2025-10-26 A | 2025-10-28 A | RSZone 1Road 26PondsA29280 | 100% |  |  |  |  | Contract Price Original Scope [11985 SAR]; Equipment Operator [55 h]; Labour [102.32 h]; Ponds - RAFT Concerete [12] | 11,984.99 | 11,984.99 | RD26 |
| RSZone 1Road 26PondsA29300 |  | Zone 1 - Road 26 - Sewage Network - Ponds - Backfilling | 5d | 2025-10-29 A | 2025-11-03 A | RSZone 1Road 26PondsA29290 | 100% |  |  |  |  | Contract Price Original Scope [566534 SAR]; Excavator Operator [20 h]; Compactor Operator [20 h]; Dump Truck Operator [20 h]; Water Truck Operator [20 h]; Labour [4836.77 h]; Ponds - Backfilling [17951] | 566,533.56 | 566,533.56 | RD26 |
| RSZone 1Road 26PondsA29320 |  | Zone 1 - Road 26 - Sewage Network - Ponds - Perimeter waterproof | 5d | 2025-11-04 A | 2025-11-09 A | RSZone 1Road 26PondsA29300 | 100% |  |  |  |  | Contract Price Original Scope [6817.2 SAR]; Equipment Operator [109 h]; Labour [58.2 h]; Ponds - Perimeter waterproof [120] | 6,817.2 | 6,817.2 | RD26 |
| RSZone 1Road 26PondsA29340 |  | Zone 1 - Road 26 - Sewage Network - Ponds - Riprap | 2d | 2025-11-10 A | 2025-11-11 A | RSZone 1Road 26PondsA29320 | 100% |  |  |  |  | Contract Price Original Scope [69786 SAR]; Excavator Operator [400 h]; Dump Truck Operator [400 h]; Equipment Operator [400 h]; Water Truck Operator [400 h]; Labour [595.8 h]; Ponds - Riprap [401] | 69,786.03 | 69,786.03 | RD26 |
| RSZone 1Road 26PondsA90080 |  | Zone 1 - Road 26 - Sewage Network - Ponds - Vertical Concrete (G143) | 4d | 2025-11-12 A | 2025-11-16 A | RSZone 1Road 26PondsA29340 | 100% |  |  |  |  | Contract Price Original Scope [3520.26 SAR]; Equipment Operator [55 h]; Labour [30.05 h]; Ponds - Vertical Concrete (G143) [3.19] | 3,520.26 | 3,520.26 | RD25 |
| RSZone 1Road 26PondsA90090 |  | Zone 1 - Road 26 - Sewage Network - Ponds - Reinforcement Steel 12 mm (G524) | 3d | 2025-11-17 A | 2025-11-19 A | RSZone 1Road 26PondsA90080 | 100% |  |  |  |  | Contract Price Original Scope [40680.9 SAR]; Equipment Operator [55 h]; Labour [347.31 h]; Ponds - Reinforcement Steel 12 mm (G524) [7.01] | 40,680.89 | 40,680.89 | RD25 |
| RSZone 1Road 26PondsA29230-old |  | Zone 1 - Road 26 - Sewage Network - Ponds - Excavation (old) | 146d | 2026-05-14 A | 2026-11-01 A | RSZone 1Road 26PondsA29240-old | 100% | 2026-05-14 | 2026-11-02 |  |  | Contract Price Original Scope [1393621 SAR]; Excavator Operator [27 h]; Dump Truck Operator [27 h]; Labour [11898 h]; Ponds - Excavation [90908.1] | 1,393,621.17 | 1,393,621.17 | RD26 |
| RSZone 1Road 26PondsA29240-old |  | Zone 1 - Road 26 - Sewage Network - Ponds - Disposal Material (old) | 144d | 2026-05-17 A | 2026-11-01 A | RSZone 1Road 26PondsA90090, RSZone 1Road 25PondsA28980-old | 100% |  |  |  |  | Contract Price Original Scope [1027194 SAR]; Excavator Operator [106.82 h]; Dump Truck Operator [106.82 h]; Equipment Operator [106.82 h]; Labour [8769.65 h]; Ponds - Disposal Material [81394.3] | 1,027,193.59 | 1,027,193.59 | RD26 |
| RSZone 1Road 26PondsA29240 |  | Zone 1 - Road 26 - Sewage Network - Ponds - Disposal Material | 1d | 2026-11-10 | 2026-11-10 | RSZone 1Road 26PondsA29240-old, RSZone 1Road 25PondsA28980 |  |  |  | 33.4d | 0d | Contract Price Original Scope [20995.8 SAR]; Excavator Operator [2.18 h]; Dump Truck Operator [2.18 h]; Equipment Operator [2.18 h]; Labour [179.25 h]; Ponds - Disposal Material [1663.7] | 20,995.84 |  | RD26 |
| RSZone 1Road 26PondsA29230 |  | Zone 1 - Road 26 - Sewage Network - Ponds - Excavation | 1d | 2026-11-11 | 2026-11-11 | RSZone 1Road 26PondsA29230-old, RSZone 1Road 26PondsA29240 |  |  |  | 33.4d | 33.19d | Contract Price Original Scope [154847 SAR]; Excavator Operator [3 h]; Dump Truck Operator [3 h]; Labour [1322 h]; Ponds - Excavation [10100.9] | 154,846.8 |  | RD26 |
| RSZone 1Road 26PondsA29330 |  | Zone 1 - Road 26 - Sewage Network - Ponds - Entrance Rood | 15d | 2026-12-21 | 2027-01-07 | RSZone 1Road 26PondsA29230, RSZone 1Road 25PondsA29070, RSZone 1Road 26PondsA29240 |  |  |  | 0.21d | 0d | Contract Price Original Scope [116120 SAR]; Grader Operator [37 h]; Paver Operator [37 h]; Compactor Operator [37 h]; Dozer Operator [37 h]; Water Truck Operator [37 h]; Labour [991.37 h]; Ponds - Entrance Rood [2044] | 116,119.64 |  | RD26 |
|  | 5 | **Potable Water Network** |  | 2026-06-21 | 2026-11-19 |  |  |  |  |  |  |  |  |  |  |
|  | 7 | **FIRE HYDRANT** |  | 2026-06-29 | 2026-11-19 |  |  |  |  |  |  |  |  |  |  |
| RSZone 1Road 26Potable NetworkA57660-old |  | Zone 1 - Road 26 - Potable Water Network - FIRE HYDRANT - Excavation (old) | 107d | 2026-06-29 A | 2026-11-01 A | RSZone 1Road 25Potable NetworkA57340 | 100% |  |  |  |  | Contract Price Original Scope [6936.41 SAR]; Excavator Operator [25 h]; Dump Truck Operator [25 h]; Labour [59.22 h]; Fire Hydrant [5] | 6,936.41 | 6,936.41 | RD26 |
| RSZone 1Road 26Potable NetworkA57670-old |  | Zone 1 - Road 26 - Potable Water Network - FIRE HYDRANT - Buried Gate Valve Installation (old) | 105d | 2026-07-01 A | 2026-11-01 A | RSZone 1Road 26Potable NetworkA57660-old | 100% |  |  |  |  | Labour; Fire Hydrant [5] |  |  | RD26 |
| RSZone 1Road 26Potable NetworkA57680-old |  | Zone 1 - Road 26 - Potable Water Network - FIRE HYDRANT - Fire Hydrant Installation (old) | 104d | 2026-07-02 A | 2026-11-01 A | RSZone 1Road 26Potable NetworkA57670-old | 100% | 2026-07-02 | 2026-11-02 |  |  | Contract Price Original Scope [50635.8 SAR]; Labour [432.3 h]; Fire Hydrant [5] | 50,635.79 | 50,635.79 | RD26 |
| RSZone 1Road 26Potable NetworkA57660 |  | Zone 1 - Road 26 - Potable Water Network - FIRE HYDRANT - Excavation | 1d | 2026-11-09 | 2026-11-09 | RSZone 1Road 26Potable NetworkA57660-old |  |  |  | 89.07d | 0d | Contract Price Original Scope [1387.28 SAR]; Excavator Operator [5 h]; Dump Truck Operator [5 h]; Labour [11.84 h]; Fire Hydrant [1] | 1,387.28 |  | RD26 |
| RSZone 1Road 26Potable NetworkA57670 |  | Zone 1 - Road 26 - Potable Water Network - FIRE HYDRANT - Buried Gate Valve Installation | 1d | 2026-11-10 | 2026-11-10 | RSZone 1Road 26Potable NetworkA57670-old, RSZone 1Road 26Potable NetworkA57660 |  |  |  | 91.4d | 0d | Labour; Fire Hydrant [1] |  |  | RD26 |
| RSZone 1Road 26Potable NetworkA57680 |  | Zone 1 - Road 26 - Potable Water Network - FIRE HYDRANT - Fire Hydrant Installation | 1d | 2026-11-11 | 2026-11-11 | RSZone 1Road 26Potable NetworkA57680-old, RSZone 1Road 26Potable NetworkA57670 |  |  |  | 91.4d | 0d | Contract Price Original Scope [10127.2 SAR]; Labour [86.46 h]; Fire Hydrant [1] | 10,127.16 |  | RD26 |
| RSZone 1Road 26Potable NetworkA57690 |  | Zone 1 - Road 26 - Potable Water Network - FIRE HYDRANT - Surface Box | 3d | 2026-11-12 | 2026-11-15 | RSZone 1Road 26Potable NetworkA57680, RSZone 1Road 26Potable NetworkA57670 |  |  |  | 91.4d | 0d | Labour; Fire Hydrant [6] |  |  | RD26 |
| RSZone 1Road 26Potable NetworkA57700 |  | Zone 1 - Road 26 - Potable Water Network - FIRE HYDRANT - Test | 2d | 2026-11-16 | 2026-11-17 | RSZone 1Road 26Potable NetworkA57690 |  |  |  | 91.4d | 0d | Contract Price Original Scope [5826.58 SAR]; Pump Operator [20 h]; Equipment Operator [20 h]; Labour [49.74 h]; Fire Hydrant [6] | 5,826.58 |  | RD26 |
| RSZone 1Road 26Potable NetworkA57710 |  | Zone 1 - Road 26 - Potable Water Network - FIRE HYDRANT - Backfilling | 2d | 2026-11-18 | 2026-11-19 | RSZone 1Road 26Potable NetworkA57700 |  |  |  | 91.4d | 91.2d | Contract Price Original Scope [8323.69 SAR]; Excavator Operator [20 h]; Compactor Operator [20 h]; Dump Truck Operator [20 h]; Water Truck Operator [20 h]; Labour [71.06 h]; Fire Hydrant [6] | 8,323.69 |  | RD26 |

| ID | WBS | Activity | Duration | Start | Finish | Predecessors | Complete | Planned start | Planned finish | Total float | Free float | Resources | Cost | Actual cost | MODON |
| --- | --- | --- | --- | --- | --- | --- | --- | --- | --- | --- | --- | --- | --- | --- | --- |
|  | 4 | **Buried Valves** |  | 2026-06-21 | 2026-11-19 |  |  |  |  |  |  |  |  |  |  |
| RSZone 1Road 26Potable NetworkA56020-old |  | Zone 1 - Road 26 - Potable Water Network - Buried Valves - Excavation (old) | 114d | 2026-06-21 A | 2026-11-01 A | RSZone 1Road 26Potable NetworkA57660-old | 100% |  |  |  |  | Contract Price Original Scope [1121.33 SAR]; Excavator Operator [23.33 h]; Dump Truck Operator [23.33 h]; Labour [9.57 h]; Buried Valves [7] | 1,121.33 | 1,121.33 | RD26 |
| RSZone 1Road 26Potable NetworkA56030-old |  | Zone 1 - Road 26 - Potable Water Network - Buried Valves - Installation (old) | 112d | 2026-06-23 A | 2026-11-01 A | RSZone 1Road 26Potable NetworkA56020-old | 100% |  |  |  |  | Contract Price Original Scope [14577.3 SAR]; Labour [124.45 h]; Buried Valves [7] | 14,577.27 | 14,577.27 | RD26 |
| RSZone 1Road 26Potable NetworkA56050-old |  | Zone 1 - Road 26 - Potable Water Network - Buried Valves - Test (old) | 110d | 2026-06-25 A | 2026-11-01 A | RSZone 1Road 26Potable NetworkA56030-old | 100% | 2026-06-25 | 2026-11-02 |  |  | Contract Price Original Scope [1922.28 SAR]; Pump Operator [6.67 h]; Equipment Operator [6.67 h]; Labour [16.41 h]; Buried Valves [3] | 1,922.28 | 1,922.28 | RD26 |
| RSZone 1Road 26Potable NetworkA56020 |  | Zone 1 - Road 26 - Potable Water Network - Buried Valves - Excavation | 1d | 2026-11-10 | 2026-11-10 | RSZone 1Road 26Potable NetworkA56020-old, RSZone 1Road 26Potable NetworkA57660 |  |  |  | 89.07d | 0d | Contract Price Original Scope [320.38 SAR]; Excavator Operator [6.67 h]; Dump Truck Operator [6.67 h]; Labour [2.74 h]; Buried Valves [2] | 320.38 |  | RD26 |
| RSZone 1Road 26Potable NetworkA56030 |  | Zone 1 - Road 26 - Potable Water Network - Buried Valves - Installation | 1d | 2026-11-11 | 2026-11-11 | RSZone 1Road 26Potable NetworkA56030-old, RSZone 1Road 26Potable NetworkA56020 |  |  |  | 92.07d | 0d | Contract Price Original Scope [4164.93 SAR]; Labour [35.56 h]; Buried Valves [2] | 4,164.93 |  | RD26 |
| RSZone 1Road 26Potable NetworkA56050 |  | Zone 1 - Road 26 - Potable Water Network - Buried Valves - Test | 1.33d | 2026-11-12 | 2026-11-14 | RSZone 1Road 26Potable NetworkA56050-old, RSZone 1Road 26Potable NetworkA56030 |  |  |  | 92.07d | 0d | Contract Price Original Scope [3844.55 SAR]; Pump Operator [13.33 h]; Equipment Operator [13.33 h]; Labour [32.82 h]; Buried Valves [6] | 3,844.55 |  | RD26 |
| RSZone 1Road 26Potable NetworkA56040 |  | Zone 1 - Road 26 - Potable Water Network - Buried Valves - Surface Box | 3d | 2026-11-14 | 2026-11-17 | RSZone 1Road 26Potable NetworkA56050, RSZone 1Road 26Potable NetworkA56020, RSZone 1Road 26Potable NetworkA56030, RSZone 1Road 26Potable NetworkA57660 |  |  |  | 92.07d | 0d | Labour; Buried Valves [9] |  |  | RD26 |
| RSZone 1Road 26Potable NetworkA56060 |  | Zone 1 - Road 26 - Potable Water Network - Buried Valves - Backfilling | 2d | 2026-11-17 | 2026-11-19 | RSZone 1Road 26Potable NetworkA56040 |  |  |  | 92.07d | 91.87d | Contract Price Original Scope [2883.42 SAR]; Excavator Operator [20 h]; Compactor Operator [20 h]; Dump Truck Operator [20 h]; Water Truck Operator [20 h]; Labour [24.62 h]; Buried Valves [9] | 2,883.42 |  | RD26 |
|  | 2 | **Buried Valves-1** |  | 2026-10-13 | 2026-11-18 |  |  |  |  |  |  |  |  |  |  |
| RSZone 1Road 26Irrigation NetworkA94700- |  | Zone 1 - Road 26 - Lateral Irrigation Network - Buried Valves-1 - Excavation (old) | 17d | 2026-10-13 A | 2026-11-01 A | RSZone 1Road 25Irrigation NetworkA23050 | 100% |  |  |  |  | Contract Price Original Scope [1412.39 SAR]; Excavator Operator [23.33 h]; Dump Truck Operator [23.33 h]; Labour [12.06 h]; Buried Valves [21] | 1,412.39 | 1,412.39 | RD26 |
| RSZone 1Road 26Irrigation NetworkA94710- |  | Zone 1 - Road 26 - Lateral Irrigation Network - Buried Valves-1 - Installation (old) | 16d | 2026-10-14 A | 2026-11-01 A | RSZone 1Road 26Irrigation NetworkA94700- | 100% |  |  |  |  | Contract Price Original Scope [18361.1 SAR]; Labour [156.76 h]; Buried Valves [21] | 18,361.06 | 18,361.06 | RD26 |
| RSZone 1Road 26Irrigation NetworkA94700- |  | Zone 1 - Road 26 - Lateral Irrigation Network - Buried Valves-1 - Excavation (old) | 1d | 2026-11-09 | 2026-11-09 | RSZone 1Road 26Irrigation NetworkA94700- |  |  |  | 92.4d | 0d | Contract Price Original Scope [403.54 SAR]; Excavator Operator [6.67 h]; Dump Truck Operator [6.67 h]; Labour [3.45 h]; Buried Valves [6] | 403.54 |  | RD26 |
| RSZone 1Road 26Irrigation NetworkA94710- |  | Zone 1 - Road 26 - Lateral Irrigation Network - Buried Valves-1 - Installation (old) | 1d | 2026-11-10 | 2026-11-10 | RSZone 1Road 26Irrigation NetworkA94710-, RSZone 1Road 26Irrigation NetworkA94700- |  |  |  | 92.4d | 0d | Contract Price Original Scope [5246.02 SAR]; Labour [44.79 h]; Buried Valves [6] | 5,246.02 |  | RD26 |
| RSZone 1Road 26Irrigation NetworkA94720 |  | Zone 1 - Road 26 - Lateral Irrigation Network - Buried Valves-1 - Surface Box | 3d | 2026-11-11 | 2026-11-14 | RSZone 1Road 26Irrigation NetworkA94710-, RSZone 1Road 26Irrigation NetworkA94700- |  |  |  | 92.4d | 0d | Labour; Buried Valves [27] |  |  | RD26 |
| RSZone 1Road 26Irrigation NetworkA94730 |  | Zone 1 - Road 26 - Lateral Irrigation Network - Buried Valves-1 - Test | 2d | 2026-11-15 | 2026-11-16 | RSZone 1Road 26Irrigation NetworkA94720 |  |  |  | 92.4d | 0d | Contract Price Original Scope [7263.72 SAR]; Pump Operator [20 h]; Equipment Operator [20 h]; Labour [62.01 h]; Buried Valves [27] | 7,263.72 |  | RD26 |
| RSZone 1Road 26Irrigation NetworkA94740 |  | Zone 1 - Road 26 - Lateral Irrigation Network - Buried Valves-1 - Backfilling | 2d | 2026-11-17 | 2026-11-18 | RSZone 1Road 26Irrigation NetworkA94730 |  |  |  | 92.4d | 91.76d | Contract Price Original Scope [3631.86 SAR]; Excavator Operator [20 h]; Compactor Operator [20 h]; Dump Truck Operator [20 h]; Water Truck Operator [20 h]; Labour [31.01 h]; Buried Valves [27] | 3,631.86 |  | RD26 |
|  | 1 | **Fittings** |  | 2026-10-07 | 2026-11-11 |  |  |  |  |  |  |  |  |  |  |
|  | 5 | **Tees 200 MM** |  | 2026-10-07 | 2026-11-11 |  |  |  |  |  |  |  |  |  |  |
| RSZone 1Road 26Potable NetworkA90100-old |  | Zone 1 - Road 26 - Potable Water Network - Tees 200 MM - Installation (old) | 22d | 2026-10-07 A | 2026-11-01 A | RSZone 1Road 26Potable NetworkA56020-old | 100% |  |  |  |  | Contract Price Original Scope [20997.2 SAR]; Labour [179.26 h]; Fittings - Tees (all sizes) [7] | 20,997.21 | 20,997.21 | RD26 |
| RSZone 1Road 26Potable NetworkA90100 |  | Zone 1 - Road 26 - Potable Water Network - Tees 200 MM - Installation | 1d | 2026-11-11 | 2026-11-11 | RSZone 1Road 26Potable NetworkA90100-old, RSZone 1Road 26Potable NetworkA56020 |  |  |  | 89.07d | 0d | Contract Price Original Scope [8998.81 SAR]; Labour [76.83 h]; Fittings - Tees (all sizes) [3] | 8,998.81 |  | RD26 |
|  | 5 | **Thrust Blocks** |  | 2026-10-11 | 2026-11-12 |  |  |  |  |  |  |  |  |  |  |
| RSZone 1Road 26Potable NetworkA90110-old |  | Zone 1 - Road 26 - Potable Water Network - Thrust Blocks - Thrust Block (old) | 19d | 2026-10-11 A | 2026-11-01 A | RSZone 1Road 26Potable NetworkA90100-old | 100% |  |  |  |  | Contract Price Original Scope [16866.7 SAR]; Crane Operator [5 h]; Pump Operator [5 h]; Equipment Operator [5 h]; Labour [144 h]; Thrust Blocks [5] | 16,866.7 | 16,866.7 | RD26 |
| RSZone 1Road 26Potable NetworkA90110 |  | Zone 1 - Road 26 - Potable Water Network - Thrust Blocks - Thrust Block | 1d | 2026-11-12 | 2026-11-12 | RSZone 1Road 26Potable NetworkA90110-old, RSZone 1Road 26Potable NetworkA90100 |  |  |  | 89.07d | 0d | Contract Price Original Scope [23613.4 SAR]; Crane Operator [7 h]; Pump Operator [7 h]; Equipment Operator [7 h]; Labour [201.6 h]; Thrust Blocks [7] | 23,613.39 |  | RD26 |

| ID | WBS | Activity | Duration | Start | Finish | Predecessors | Complete | Planned start | Planned finish | Total float | Free float | Resources | Cost | Actual cost | MODON |
| --- | --- | --- | --- | --- | --- | --- | --- | --- | --- | --- | --- | --- | --- | --- | --- |
|  | 6 | **Lateral Irrigation Network** |  | 2026-07-19 | 2026-11-11 |  |  |  |  |  |  |  |  |  |  |
|  | 1 | **HDPE Fitting** |  | 2026-07-19 | 2026-11-11 |  |  |  |  |  |  |  |  |  |  |
|  | 2 | **Tees** |  | 2026-10-11 | 2026-11-11 |  |  |  |  |  |  |  |  |  |  |
| RSZone 1Road 26Irrigation NetworkA90120- |  | Zone 1 - Road 26 - Lateral Irrigation Network - Tees - Installation (old) | 19d | 2026-10-11 A | 2026-11-01 A | RSZone 1Road 25Irrigation NetworkA23050 | 100% |  |  |  |  | Contract Price Original Scope [1536.06 SAR]; Labour [13.11 h]; Fittings - Tees (all sizes) [1] | 1,536.06 | 1,536.06 | RD26 |
| RSZone 1Road 26Irrigation NetworkA90120- |  | Zone 1 - Road 26 - Lateral Irrigation Network - Tees - Installation (old) | 2.25d | 2026-11-09 | 2026-11-11 | RSZone 1Road 26Irrigation NetworkA90120- |  |  |  | 99.15d | 98.51d | Contract Price Original Scope [4608.18 SAR]; Labour [39.34 h]; Fittings - Tees (all sizes) [3] | 4,608.18 |  | RD26 |
|  | 3 | **End Cap** |  | 2026-07-19 | 2026-07-20 |  |  |  |  |  |  |  |  |  |  |
| RSZone 1Road 26Irrigation NetworkA90130 |  | Zone 1 - Road 26 - Lateral Irrigation Network - End Cap - Installation | 2d | 2026-07-19 A | 2026-07-20 A | RSZone 1Road 25Irrigation NetworkA23050 | 100% |  |  |  |  | Contract Price Original Scope [1120.77 SAR]; Labour [9.57 h]; Fittings - End Caps (all sizes) [3] | 1,120.77 | 1,120.77 | RD26 |
|  | 4 | **Thrust Block** |  | 2026-10-14 | 2026-11-09 |  |  |  |  |  |  |  |  |  |  |
| RSZone 1Road 26Irrigation NetworkA90170- |  | Zone 1 - Road 26 - Lateral Irrigation Network - Thrust Block - Thrust Block (old) | 16d | 2026-10-14 A | 2026-11-01 A | RSZone 1Road 26Irrigation NetworkA90130 | 100% |  |  |  |  | Contract Price Original Scope [1021.76 SAR]; Crane Operator [3 h]; Pump Operator [3 h]; Equipment Operator [3 h]; Labour [8.72 h]; Thrust Blocks [1] | 1,021.76 | 1,021.76 | RD26 |
| RSZone 1Road 26Irrigation NetworkA90170- |  | Zone 1 - Road 26 - Lateral Irrigation Network - Thrust Block - Thrust Block (old) | 1d | 2026-11-09 | 2026-11-09 | RSZone 1Road 26Irrigation NetworkA90170- |  |  |  | 100.4d | 99.76d | Contract Price Original Scope [3065.28 SAR]; Crane Operator [9 h]; Pump Operator [9 h]; Equipment Operator [9 h]; Labour [26.17 h]; Thrust Blocks [3] | 3,065.28 |  | RD26 |
|  | 3 | **Road Crossing** |  | 2026-05-05 | 2026-12-26 |  |  |  |  |  |  |  |  |  |  |
|  | 1 | **Rood Crossing UPVC Selves 300 MM** |  | 2026-05-05 | 2026-11-22 |  |  |  |  |  |  |  |  |  |  |
| RSZone 1Road 26Road CrossingA21850-old |  | Zone 1 - Road 26 - Road Crossing - Rood Crossing UPVC Selves 300 MM - Rood Crossing UPVC Selves (old) | 154d | 2026-05-05 A | 2026-11-01 A | RSZone 1Road 25Road CrossingA21870-old | 100% |  |  |  |  | Contract Price Original Scope [60512.8 SAR]; Excavator Operator [137.01 h]; Crane Operator [137.01 h]; Equipment Operator [137.01 h]; Labour [516.63 h]; Road Crossing Sleeves 300 mm [141.58] | 60,512.82 | 60,512.82 | RD26 |
| RSZone 1Road 26Road CrossingA21850 |  | Zone 1 - Road 26 - Road Crossing - Rood Crossing UPVC Selves 300 MM - Rood Crossing UPVC Selves | 1.65d | 2026-11-19 | 2026-11-22 | RSZone 1Road 26Road CrossingA21850-old, RSZone 1Road 25Road CrossingA21870 |  |  |  | 0.21d | 0d | Contract Price Original Scope [5735.73 SAR]; Excavator Operator [12.99 h]; Crane Operator [12.99 h]; Equipment Operator [12.99 h]; Labour [48.97 h]; Road Crossing Sleeves 300 mm [13.42] | 5,735.73 |  | RD26 |
|  | 2 | **Rood Crossing UPVC Selves 400MM** |  | 2026-12-01 | 2026-12-26 |  |  |  |  |  |  |  |  |  |  |
| RSZone 1Road 26Road CrossingA21860 |  | Zone 1 - Road 26 - Road Crossing - Rood Crossing UPVC Selves 400MM - Rood Crossing UPVC Selves | 21d | 2026-12-01 | 2026-12-26 | RSZone 3Road 04Road CrossingA79100, RSZone 1Road 26Road CrossingA21850 |  |  |  | 0.21d | 0d | Contract Price Original Scope [17556.3 SAR]; Excavator Operator [150 h]; Crane Operator [150 h]; Equipment Operator [150 h]; Labour [149.89 h]; Road Crossing Sleeves 400 mm [30] | 17,556.3 |  | RD26 |
|  | 12 | **Telecom Network** |  | 2026-07-07 | 2026-11-25 |  |  |  |  |  |  |  |  |  |  |
|  | 4 | **Telecom Pipe** |  | 2026-07-07 | 2026-11-18 |  |  |  |  |  |  |  |  |  |  |
| RSZone 1Road 26Telecom NetworkA60000-old |  | Zone 1 - Road 26 - Telecom Network - Telecom Pipe - Excavation (old) | 100d | 2026-07-07 A | 2026-11-01 A | RSZone 1Road 26Telecom NetworkA60010-old | 100% |  |  |  |  | Contract Price Original Scope [23768.8 SAR]; Excavator Operator [23.43 h]; Dump Truck Operator [23.43 h]; Labour [202.93 h]; Telecom Pipe [1102.93] | 23,768.85 | 23,768.85 | RD26 |
| RSZone 1Road 26Telecom NetworkA60010-old |  | Zone 1 - Road 26 - Telecom Network - Telecom Pipe - Concrete Pouring (old) | 98d | 2026-07-09 A | 2026-11-01 A | RSZone 1Road 25Telecom NetworkA68120-old | 100% | 2026-07-09 | 2026-11-02 |  |  | Contract Price Original Scope [136270 SAR]; Crane Operator [8.32 h]; Pump Operator [8.32 h]; Equipment Operator [8.32 h]; Labour [1163.4 h]; Telecom Pipe [903.32] | 136,269.72 | 136,269.72 | RD26 |
| RSZone 1Road 26Telecom NetworkA60010 |  | Zone 1 - Road 26 - Telecom Network - Telecom Pipe - Concrete Pouring | 1d | 2026-11-12 | 2026-11-12 | RSZone 1Road 26Telecom NetworkA60010-old, RSZone 1Road 25Telecom NetworkA68120 |  |  |  | 91.4d | 0d | Contract Price Original Scope [76737.1 SAR]; Crane Operator [4.68 h]; Pump Operator [4.68 h]; Equipment Operator [4.68 h]; Labour [655.14 h]; Telecom Pipe [508.68] | 76,737.06 |  | RD26 |
| RSZone 1Road 26Telecom NetworkA60000 |  | Zone 1 - Road 26 - Telecom Network - Telecom Pipe - Excavation | 1d | 2026-11-14 | 2026-11-14 | RSZone 1Road 26Telecom NetworkA60000-old, RSZone 1Road 26Telecom NetworkA60010 |  |  |  | 91.4d | 0d | Contract Price Original Scope [6660.69 SAR]; Excavator Operator [6.57 h]; Dump Truck Operator [6.57 h]; Labour [56.87 h]; Telecom Pipe [309.07] | 6,660.69 |  | RD26 |
| RSZone 1Road 26Telecom NetworkA60020 |  | Zone 1 - Road 26 - Telecom Network - Telecom Pipe - Test | 2d | 2026-11-15 | 2026-11-16 | RSZone 1Road 26Telecom NetworkA60000, RSZone 1Road 26Telecom NetworkA60010 |  |  |  | 91.4d | 0d | Contract Price Original Scope [30429.5 SAR]; Pump Operator [20 h]; Equipment Operator [20 h]; Labour [259.79 h]; Telecom Pipe [1412] | 30,429.54 |  | RD26 |
| RSZone 1Road 26Telecom NetworkA60030 |  | Zone 1 - Road 26 - Telecom Network - Telecom Pipe - Backfilling | 2d | 2026-11-17 | 2026-11-18 | RSZone 1Road 26Telecom NetworkA60020 |  |  |  | 91.4d | 0d | Contract Price Original Scope [30429.5 SAR]; Excavator Operator [20 h]; Compactor Operator [20 h]; Dump Truck Operator [20 h]; Water Truck Operator [20 h]; Labour [259.79 h]; Telecom Pipe [1412] | 30,429.54 |  | RD26 |

| ID | WBS | Activity | Duration | Start | Finish | Predecessors | Complete | Planned start | Planned finish | Total float | Free float | Resources | Cost | Actual cost | MODON |
| --- | --- | --- | --- | --- | --- | --- | --- | --- | --- | --- | --- | --- | --- | --- | --- |
|  | 12 | **Telecom Duct** |  | 2026-07-14 | 2026-11-25 |  |  |  |  |  |  |  |  |  |  |
| RSZone 1Road 26Telecom NetworkA64840-old |  | Zone 1 - Road 26 - Telecom Network - Telecom Duct - Excavation (old) | 94d | 2026-07-14 A | 2026-11-01 A | RSZone 1Road 26Telecom NetworkA64850-old | 100% |  |  |  |  | Contract Price Original Scope [3145.94 SAR]; Excavator Operator [29.9 h]; Dump Truck Operator [29.9 h]; Labour [26.86 h]; Telecom Duct (Road Crossing) [144.52] | 3,145.94 | 3,145.94 | RD26 |
| RSZone 1Road 26Telecom NetworkA64850-old |  | Zone 1 - Road 26 - Telecom Network - Telecom Duct - Concrete Pouring (old) | 93d | 2026-07-15 A | 2026-11-01 A | RSZone 1Road 09Telecom NetworkA63410, RSZone 1Road 26Telecom NetworkA60000-old | 100% |  |  |  |  | Contract Price Original Scope [44032.7 SAR]; Crane Operator [13.95 h]; Pump Operator [13.95 h]; Equipment Operator [13.95 h]; Labour [375.93 h]; Telecom Duct (Road Crossing) [144.48] | 44,032.69 | 44,032.69 | RD26 |
| RSZone 1Road 26Telecom NetworkA64850 |  | Zone 1 - Road 26 - Telecom Network - Telecom Duct - Concrete Pouring | 1d | 2026-11-19 | 2026-11-19 | RSZone 1Road 26Telecom NetworkA64850-old, RSZone 1Road 26Telecom NetworkA60030 |  |  |  | 91.4d | 0d | Contract Price Original Scope [157.82 SAR]; Crane Operator [0.05 h]; Pump Operator [0.05 h]; Equipment Operator [0.05 h]; Labour [1.35 h]; Telecom Duct (Road Crossing) [0.52] | 157.82 |  | RD26 |
| RSZone 1Road 26Telecom NetworkA64840 |  | Zone 1 - Road 26 - Telecom Network - Telecom Duct - Excavation | 1d | 2026-11-21 | 2026-11-21 | RSZone 1Road 26Telecom NetworkA64840-old, RSZone 1Road 26Telecom NetworkA64850 |  |  |  | 91.4d | 0d | Contract Price Original Scope [10.52 SAR]; Excavator Operator [0.1 h]; Dump Truck Operator [0.1 h]; Labour [0.09 h]; Telecom Duct (Road Crossing) [0.48] | 10.52 |  | RD26 |
| RSZone 1Road 26Telecom NetworkA64860 |  | Zone 1 - Road 26 - Telecom Network - Telecom Duct - Test | 2d | 2026-11-22 | 2026-11-23 | RSZone 1Road 26Telecom NetworkA64840, RSZone 1Road 26Telecom NetworkA64850 |  |  |  | 91.4d | 0d | Contract Price Original Scope [6312.93 SAR]; Pump Operator [20 h]; Equipment Operator [20 h]; Labour [53.9 h]; Telecom Duct (Road Crossing) [145] | 6,312.93 |  | RD26 |
| RSZone 1Road 26Telecom NetworkA64870 |  | Zone 1 - Road 26 - Telecom Network - Telecom Duct - Backfilling | 2d | 2026-11-24 | 2026-11-25 | RSZone 1Road 26Telecom NetworkA64860 |  |  |  | 91.4d | 91d | Contract Price Original Scope [9469.4 SAR]; Excavator Operator [20 h]; Compactor Operator [20 h]; Dump Truck Operator [20 h]; Water Truck Operator [20 h]; Labour [80.84 h]; Telecom Duct (Road Crossing) [145] | 9,469.4 |  | RD26 |
|  | 2 | **TELECOM MANHOLE** |  | 2026-07-16 | 2026-11-12 |  |  |  |  |  |  |  |  |  |  |
| RSZone 1Road 26Telecom NetworkA68240-old |  | Zone 1 - Road 26 - Telecom Network - TELECOM MANHOLE - Manhole Installation (old) | 92d | 2026-07-16 A | 2026-11-01 A | RSZone 1Road 25Telecom NetworkA68120-old | 100% | 2026-07-16 | 2026-11-02 |  |  | Contract Price Original Scope [71288.3 SAR]; Crane Operator [13.3 h]; Boom Truck Operator [13.3 h]; Equipment Operator [13.3 h]; Labour [608.62 h]; Telecom Manhole [4.75] | 71,288.33 | 71,288.33 | RD26 |
| RSZone 1Road 26Telecom NetworkA68240 |  | Zone 1 - Road 26 - Telecom Network - TELECOM MANHOLE - Manhole Installation | 1d | 2026-11-12 | 2026-11-12 | RSZone 1Road 26Telecom NetworkA68240-old, RSZone 1Road 25Telecom NetworkA68120 |  |  |  | 76.4d | 0d | Contract Price Original Scope [3752.02 SAR]; Crane Operator [0.7 h]; Boom Truck Operator [0.7 h]; Equipment Operator [0.7 h]; Labour [32.03 h]; Telecom Manhole [0.25] | 3,752.02 |  | RD26 |
|  | 13 | **Road 27** |  | 2025-08-19 | 2027-02-23 |  |  |  |  |  |  |  |  |  |  |
|  | 8 | **Storm Network** |  | 2025-09-14 | 2027-02-23 |  |  |  |  |  |  |  |  |  |  |
|  | 2 | **Collection Pipes 150 MM** |  | 2026-07-08 | 2026-11-12 |  |  |  |  |  |  |  |  |  |  |
| RSZone 1Road 27Storm NetworkA88320 |  | Zone 1 - Road 27 - Storm Network - Collection Pipes 150 MM - Excavation | 5d | 2026-07-08 A | 2026-07-13 A | RSZone 1Road 26Storm NetworkA52180 | 100% |  |  |  |  | Contract Price Original Scope [750.31 SAR]; Excavator Operator [30 h]; Dump Truck Operator [30 h]; Labour [6.41 h]; Collection Pipes 150 MM [157] | 750.31 | 750.31 | RD27 |
| RSZone 1Road 27Storm NetworkA88330 |  | Zone 1 - Road 27 - Storm Network - Collection Pipes 150 MM - Bedding | 2.9d | 2026-07-14 A | 2026-07-16 A | RSZone 1Road 27Storm NetworkA88320 | 100% |  |  |  |  | Contract Price Original Scope [375.16 SAR]; Compactor Operator [20 h]; Equipment Operator [20 h]; Water Truck Operator [20 h]; Labour [3.2 h]; Collection Pipes 150 MM [157] | 375.16 | 375.16 | RD27 |
| RSZone 1Road 27Storm NetworkA88340 |  | Zone 1 - Road 27 - Storm Network - Collection Pipes 150 MM - Pipe Installation | 4.9d | 2026-07-19 A | 2026-07-23 A | RSZone 1Road 27Storm NetworkA88330 | 100% |  |  |  |  | Contract Price Original Scope [4877.04 SAR]; Excavator Operator [40 h]; Crane Operator [40 h]; Equipment Operator [40 h]; Labour [41.64 h]; Collection Pipes 150 MM [157] | 4,877.04 | 4,877.04 | RD27 |
| RSZone 1Road 27Storm NetworkA88350 |  | Zone 1 - Road 27 - Storm Network - Collection Pipes 150 MM - Test | 2d | 2026-11-09 | 2026-11-10 | RSZone 1Road 27Storm NetworkA88340 |  |  |  | 121.4d | 0d | Contract Price Original Scope [750.31 SAR]; Pump Operator [20 h]; Equipment Operator [20 h]; Labour [6.41 h]; Collection Pipes 150 MM [157] | 750.31 |  | RD27 |
| RSZone 1Road 27Storm NetworkA88360 |  | Zone 1 - Road 27 - Storm Network - Collection Pipes 150 MM - Backfilling | 2d | 2026-11-11 | 2026-11-12 | RSZone 1Road 27Storm NetworkA88350 |  |  |  | 121.4d | 107d | Contract Price Original Scope [750.31 SAR]; Excavator Operator [20 h]; Compactor Operator [20 h]; Dump Truck Operator [20 h]; Water Truck Operator [20 h]; Labour [6.41 h]; Collection Pipes 150 MM [157] | 750.31 |  | RD27 |
|  | 11 | **Gravel and Geotextile** |  | 2025-10-26 | 2025-10-27 |  |  |  |  |  |  |  |  |  |  |
| RSZone 1Road 27Storm NetworkA52290 |  | Zone 1 - Road 27 - Storm Network - Gravel and Geotextile - Installation | 2d | 2025-10-26 A | 2025-10-27 A | RSZone 1Road 27Storm NetworkA88340 | 100% |  |  |  |  | Contract Price Original Scope [98999.7 SAR]; Excavator Operator [7 h]; Dump Truck Operator [7 h]; Equipment Operator [7 h]; Water Truck Operator [7 h]; Labour [845.21 h]; Gravel and Geotextile [844] | 98,999.74 | 98,999.74 | RD27 |
|  | 1 | **Perforated 160 mm** |  | 2025-10-07 | 2026-11-10 |  |  |  |  |  |  |  |  |  |  |
| RSZone 1Road 27Storm NetworkA49690 |  | Zone 1 - Road 27 - Storm Network - Perforated 160 mm - Excavation | 5d | 2025-10-07 A | 2025-10-12 A | RSZone 1Road 27Storm NetworkA52290 | 100% |  |  |  |  | Contract Price Original Scope [13489.8 SAR]; Excavator Operator [30 h]; Dump Truck Operator [30 h]; Labour [115.17 h]; Perforated 160 mm [844] | 13,489.79 | 13,489.79 | RD27 |
| RSZone 1Road 27Storm NetworkA49700 |  | Zone 1 - Road 27 - Storm Network - Perforated 160 mm - Bedding | 3d | 2025-10-13 A | 2025-10-15 A | RSZone 1Road 27Storm NetworkA49690 | 100% |  |  |  |  | Contract Price Original Scope [6744.89 SAR]; Compactor Operator [20 h]; Equipment Operator [20 h]; Water Truck Operator [20 h]; Labour [57.58 h]; Perforated 160 mm [844] | 6,744.89 | 6,744.89 | RD27 |
| RSZone 1Road 27Storm NetworkA49710 |  | Zone 1 - Road 27 - Storm Network - Perforated 160 mm - Pipe Installation | 6d | 2025-10-16 A | 2025-10-22 A | RSZone 1Road 27Storm NetworkA49700 | 100% | 2025-10-16 | 2025-10-23 |  |  | Contract Price Original Scope [87683.6 SAR]; Excavator Operator [40 h]; Crane Operator [40 h]; Equipment Operator [40 h]; Labour [748.6 h]; Perforated 160 mm [844] | 87,683.63 | 87,683.63 | RD27 |
| RSZone 1Road 27Storm NetworkA49730 |  | Zone 1 - Road 27 - Storm Network - Perforated 160 mm - Backfilling | 3d | 2025-10-23 A | 2025-10-26 A | RSZone 1Road 27Storm NetworkA49710 | 100% | 2025-10-23 | 2025-10-27 |  |  | Contract Price Original Scope [13489.8 SAR]; Excavator Operator [20 h]; Compactor Operator [20 h]; Dump Truck Operator [20 h]; Water Truck Operator [20 h]; Labour [115.17 h]; Perforated 160 mm [844] | 13,489.79 | 13,489.79 | RD27 |
| RSZone 1Road 27Storm NetworkA49720 |  | Zone 1 - Road 27 - Storm Network - Perforated 160 mm - Test | 2d | 2026-11-09 | 2026-11-10 | RSZone 1Road 27Storm NetworkA49730 |  |  |  | 123.4d | 109d | Contract Price Original Scope [13489.8 SAR]; Pump Operator [20 h]; Equipment Operator [20 h]; Labour [115.17 h]; Perforated 160 mm [844] | 13,489.79 |  | RD27 |

| ID | WBS | Activity | Duration | Start | Finish | Predecessors | Complete | Total float | Free float | Resources | Cost | Actual cost | MODON |
| --- | --- | --- | --- | --- | --- | --- | --- | --- | --- | --- | --- | --- | --- |
|  | 9 | **Collection Chamber** |  | 2025-11-11 | 2026-11-25 |  |  |  |  |  |  |  |  |
| RSZone 1Road 27Storm NetworkA46440 |  | Zone 1 - Road 27 - Storm Network - Collection Chamber - Excavation | 5d | 2025-11-11 A | 2025-11-16 A | RSZone 1Road 27Storm NetworkA49730 | 100% |  |  | Contract Price Original Scope [6200.66 SAR]; Excavator Operator [30 h]; Dump Truck Operator [30 h]; Labour [52.94 h]; Collection Chamber [8] | 6,200.66 | 6,200.66 | RD27 |
| RSZone 1Road 27Storm NetworkA46450 |  | Zone 1 - Road 27 - Storm Network - Collection Chamber - Installation | 2d | 2025-11-17 A | 2025-11-18 A | RSZone 1Road 27Storm NetworkA46440 | 100% |  |  | Contract Price Original Scope [24802.6 SAR]; Crane Operator [7 h]; Boom Truck Operator [7 h]; Equipment Operator [7 h]; Labour [211.75 h]; Collection Chamber [8] | 24,802.63 | 24,802.63 | RD27 |
| RSZone 1Road 27Storm NetworkA46480 |  | Zone 1 - Road 27 - Storm Network - Collection Chamber - Backfilling | 5d | 2025-11-19 A | 2025-11-24 A | RSZone 1Road 27Storm NetworkA46450 | 100% |  |  | Contract Price Original Scope [2066.89 SAR]; Excavator Operator [20 h]; Compactor Operator [20 h]; Dump Truck Operator [20 h]; Water Truck Operator [20 h]; Labour [17.65 h]; Collection Chamber [8] | 2,066.89 | 2,066.89 | RD27 |
| RSZone 1Road 27Storm NetworkA46460-old |  | Zone 1 - Road 27 - Storm Network - Collection Chamber - D.I (old) | 131d | 2026-06-01 A | 2026-11-01 A | RSZone 1Road 27Storm NetworkA46480, RSZone 1Road 26Storm NetworkA45960-old | 100% |  |  | Contract Price Original Scope [516.72 SAR]; Crane Operator [0.88 h]; Boom Truck Operator [0.88 h]; Equipment Operator [0.88 h]; Labour [4.41 h]; Collection Chamber [1] | 516.72 | 516.72 | RD27 |
| RSZone 1Road 27Storm NetworkA46460 |  | Zone 1 - Road 27 - Storm Network - Collection Chamber - D.I | 2.62d | 2026-11-19 | 2026-11-23 | RSZone 1Road 27Storm NetworkA46460-old, RSZone 1Road 26Storm NetworkA45960 |  | 94.71d | 0d | Contract Price Original Scope [3617.05 SAR]; Crane Operator [6.12 h]; Boom Truck Operator [6.12 h]; Equipment Operator [6.12 h]; Labour [30.88 h]; Collection Chamber [7] | 3,617.05 |  | RD27 |
| RSZone 1Road 27Storm NetworkA46470 |  | Zone 1 - Road 27 - Storm Network - Collection Chamber - Inner Isolation | 2d | 2026-11-23 | 2026-11-25 | RSZone 1Road 27Storm NetworkA46460 |  | 111.38d | 96.98d | Contract Price Original Scope [4133.77 SAR]; Equipment Operator [20 h]; Labour [35.29 h]; Collection Chamber [8] | 4,133.77 |  | RD27 |
|  | 6 | **Box Culvert** |  | 2027-01-24 | 2027-02-09 |  |  |  |  |  |  |  |  |
| RSZone 1Road 27Storm NetworkA39490 |  | Zone 1 - Road 27 - Storm Network - Box Culvert - Excavation | 5d | 2027-01-24 | 2027-01-28 | RSZone 1Road 26Storm NetworkA94690 |  | 14.4d | 0d | Contract Price Original Scope [37063.2 SAR]; Excavator Operator [30 h]; Dump Truck Operator [30 h]; Labour [316.43 h]; Box Culvert (all sizes/depths) [86] | 37,063.24 |  | RD27 |
| RSZone 1Road 27Storm NetworkA39510 |  | Zone 1 - Road 27 - Storm Network - Box Culvert - SLAB INSTALLATIO | 3d | 2027-01-30 | 2027-02-01 | RSZone 1Road 27Storm NetworkA39490 |  | 45.4d | 0d | Contract Price Original Scope [74126.5 SAR]; Crane Operator [7 h]; Pump Operator [7 h]; Equipment Operator [7 h]; Labour [632.85 h]; Box Culvert (all sizes/depths) [86] | 74,126.48 |  | RD27 |
| RSZone 1Road 27Storm NetworkA39500 |  | Zone 1 - Road 27 - Storm Network - Box Culvert - Installation | 3d | 2027-02-02 | 2027-02-04 | RSZone 1Road 27Storm NetworkA39510 |  | 45.4d | 0d | Contract Price Original Scope [185316 SAR]; Crane Operator [7 h]; Equipment Operator [7 h]; Labour [1582.13 h]; Box Culvert (all sizes/depths) [86] | 185,316.21 |  | RD27 |
| RSZone 1Road 27Storm NetworkA39520 |  | Zone 1 - Road 27 - Storm Network - Box Culvert - TEST | 2d | 2027-02-06 | 2027-02-07 | RSZone 1Road 27Storm NetworkA39500 |  | 45.4d | 0d | Contract Price Original Scope [37063.2 SAR]; Pump Operator [20 h]; Equipment Operator [20 h]; Labour [316.43 h]; Box Culvert (all sizes/depths) [86] | 37,063.24 |  | RD27 |
| RSZone 1Road 27Storm NetworkA39530 |  | Zone 1 - Road 27 - Storm Network - Box Culvert - BACKFILLING | 2d | 2027-02-08 | 2027-02-09 | RSZone 1Road 27Storm NetworkA39520 |  | 45.4d | 31d | Contract Price Original Scope [37063.2 SAR]; Excavator Operator [20 h]; Compactor Operator [20 h]; Dump Truck Operator [20 h]; Water Truck Operator [20 h]; Labour [316.43 h]; Box Culvert (all sizes/depths) [86] | 37,063.24 |  | RD27 |
|  | 8 | **Manhole** |  | 2025-09-14 | 2026-11-19 |  |  |  |  |  |  |  |  |
| RSZone 1Road 27Storm NetworkA41210 |  | Zone 1 - Road 27 - Storm Network - Manhole - Excavation | 4.9d | 2025-09-14 A | 2025-09-18 A | RSZone 1Road 27Storm NetworkA46480 | 100% |  |  | Contract Price Original Scope [2777.85 SAR]; Excavator Operator [30 h]; Dump Truck Operator [30 h]; Labour [23.72 h]; Manholes GRP (new + DI cover only) [2] | 2,777.85 | 2,777.85 | RD27 |
| RSZone 1Road 27Storm NetworkA41220 |  | Zone 1 - Road 27 - Storm Network - Manhole - FOOTING | 3.9d | 2025-09-21 A | 2025-09-25 A | RSZone 1Road 27Storm NetworkA41210 | 100% |  |  | Contract Price Original Scope [16667.1 SAR]; Crane Operator [6 h]; Pump Operator [6 h]; Equipment Operator [6 h]; Labour [142.3 h]; Manholes GRP (new + DI cover only) [2] | 16,667.12 | 16,667.12 | RD27 |
| RSZone 1Road 27Storm NetworkA41230 |  | Zone 1 - Road 27 - Storm Network - Manhole - MH INSTALLATION | 4d | 2025-09-28 A | 2025-10-01 A | RSZone 1Road 27Storm NetworkA41220 | 100% |  |  | Contract Price Original Scope [16667.1 SAR]; Crane Operator [6 h]; Boom Truck Operator [6 h]; Equipment Operator [6 h]; Labour [142.3 h]; Manholes GRP (new + DI cover only) [2] | 16,667.12 | 16,667.12 | RD27 |
| RSZone 1Road 27Storm NetworkA41240 |  | Zone 1 - Road 27 - Storm Network - Manhole - CONCRETE SLAB | 3d | 2026-11-09 | 2026-11-11 | RSZone 1Road 27Storm NetworkA41230 |  | 115.4d | 0d | Contract Price Original Scope [2777.85 SAR]; Crane Operator [6 h]; Pump Operator [6 h]; Equipment Operator [6 h]; Labour [23.72 h]; Manholes GRP (new + DI cover only) [2] | 2,777.85 |  | RD27 |
| RSZone 1Road 27Storm NetworkA41250 |  | Zone 1 - Road 27 - Storm Network - Manhole - COVER INSTALLATION | 3d | 2026-11-12 | 2026-11-15 | RSZone 1Road 27Storm NetworkA41240 |  | 115.4d | 0d | Contract Price Original Scope [13889.3 SAR]; Crane Operator [6 h]; Boom Truck Operator [6 h]; Equipment Operator [6 h]; Labour [118.58 h]; Manholes GRP (new + DI cover only) [5] | 13,889.27 |  | RD27 |
| RSZone 1Road 27Storm NetworkA41260 |  | Zone 1 - Road 27 - Storm Network - Manhole - TEST | 2d | 2026-11-16 | 2026-11-17 | RSZone 1Road 27Storm NetworkA41250 |  | 115.4d | 0d | Contract Price Original Scope [5555.71 SAR]; Pump Operator [20 h]; Equipment Operator [20 h]; Labour [47.43 h]; Manholes GRP (new + DI cover only) [2] | 5,555.71 |  | RD27 |
| RSZone 1Road 27Storm NetworkA41270 |  | Zone 1 - Road 27 - Storm Network - Manhole - BACKFILLING | 2d | 2026-11-18 | 2026-11-19 | RSZone 1Road 27Storm NetworkA41260 |  | 115.4d | 101d | Contract Price Original Scope [5555.71 SAR]; Excavator Operator [20 h]; Compactor Operator [20 h]; Dump Truck Operator [20 h]; Water Truck Operator [20 h]; Labour [47.43 h]; Manholes GRP (new + DI cover only) [2] | 5,555.71 |  | RD27 |
|  | 3 | **Concrete Manholes on Box Culvert** |  | 2027-01-30 | 2027-02-23 |  |  |  |  |  |  |  |  |
| RSZone 1Road 27Storm NetworkA94750 |  | Zone 1 - Road 27 - Storm Network - Concrete Manholes on Box Culvert - Excavation | 3d | 2027-01-30 | 2027-02-01 | RSZone 1Road 27Storm NetworkA39490 |  | 14.4d | 0d | Contract Price Original Scope [6495.43 SAR]; Labour [55.45 h]; Concrete Manholes on Box Culvert - Manhole with a depth of 2.5-3.0 m [6] | 6,495.43 |  | RD27 |
| RSZone 1Road 27Storm NetworkA94770 |  | Zone 1 - Road 27 - Storm Network - Concrete Manholes on Box Culvert - Slab | 3d | 2027-02-02 | 2027-02-04 | RSZone 1Road 27Storm NetworkA94750 |  | 35.4d | 0d | Contract Price Original Scope [45468 SAR]; Labour [388.18 h]; Concrete Manholes on Box Culvert - Manhole with a depth of 2.5-3.0 m [6] | 45,468.04 |  | RD27 |
| RSZone 1Road 27Storm NetworkA94760 |  | Zone 1 - Road 27 - Storm Network - Concrete Manholes on Box Culvert - Walls | 3d | 2027-02-06 | 2027-02-08 | RSZone 1Road 27Storm NetworkA94770 |  | 35.4d | 0d | Contract Price Original Scope [25981.7 SAR]; Labour [221.82 h]; Concrete Manholes on Box Culvert - Manhole with a depth of 2.5-3.0 m [6] | 25,981.74 |  | RD27 |
| RSZone 1Road 27Storm NetworkA94790 |  | Zone 1 - Road 27 - Storm Network - Concrete Manholes on Box Culvert - Internal Isolation | 3d | 2027-02-09 | 2027-02-11 | RSZone 1Road 27Storm NetworkA94760 |  | 35.4d | 0d | Contract Price Original Scope [6495.43 SAR]; Labour [55.45 h]; Concrete Manholes on Box Culvert - Manhole with a depth of 2.5-3.0 m [6] | 6,495.43 |  | RD27 |
| RSZone 1Road 27Storm NetworkA94780 |  | Zone 1 - Road 27 - Storm Network - Concrete Manholes on Box Culvert - D.I Cover | 3d | 2027-02-13 | 2027-02-15 | RSZone 1Road 27Storm NetworkA94790 |  | 35.4d | 0d | Contract Price Original Scope [12990.9 SAR]; Labour [110.91 h]; Concrete Manholes on Box Culvert - Manhole with a depth of 2.5-3.0 m [22] | 12,990.87 |  | RD27 |
| RSZone 1Road 27Storm NetworkA94800 |  | Zone 1 - Road 27 - Storm Network - Concrete Manholes on Box Culvert - External Isolation | 3d | 2027-02-16 | 2027-02-18 | RSZone 1Road 27Storm NetworkA94780 |  | 35.4d | 0d | Contract Price Original Scope [6495.43 SAR]; Labour [55.45 h]; Concrete Manholes on Box Culvert - Manhole with a depth of 2.5-3.0 m [6] | 6,495.43 |  | RD27 |
| RSZone 1Road 27Storm NetworkA94810 |  | Zone 1 - Road 27 - Storm Network - Concrete Manholes on Box Culvert - Backfilling | 2d | 2027-02-20 | 2027-02-23 | RSZone 1Road 27Storm NetworkA94800 |  | 35.4d | 21d | Contract Price Original Scope [6495.43 SAR]; Excavator Operator [20 h]; Compactor Operator [20 h]; Dump Truck Operator [20 h]; Water Truck Operator [20 h]; Labour [55.45 h]; Concrete Manholes on Box Culvert - Manhole with a depth of 2.5-3.0 m [6] | 6,495.43 |  | RD27 |

| ID | WBS | Activity | Duration | Start | Finish | Predecessors | Complete | Planned start | Planned finish | Total float | Free float | Resources | Cost | Actual cost | MODON |
| --- | --- | --- | --- | --- | --- | --- | --- | --- | --- | --- | --- | --- | --- | --- | --- |
|  | 3 | **Sewage Network** |  | 2025-08-19 | 2026-11-16 |  |  |  |  |  |  |  |  |  |  |
|  | 5 | **UPVC Pipes** |  | 2025-08-19 | 2026-11-15 |  |  |  |  |  |  |  |  |  |  |
|  | 1 | **UPVC Pipes 150 MM** |  | 2025-08-19 | 2025-09-07 |  |  |  |  |  |  |  |  |  |  |
| RSZone 1Road 27Sewage NetworkA32930 |  | Zone 1 - Road 27 - Sewage Network - UPVC Pipes 150 MM - Excavation | 6d | 2025-08-19 A | 2025-08-25 A | RSZone 1Road 26Sewage NetworkA33830 | 100% |  |  |  |  | Contract Price Original Scope [405.9 SAR]; Excavator Operator [30 h]; Dump Truck Operator [30 h]; Labour [3.47 h]; UPVC Pipes 150 MM [13] | 405.9 | 405.9 | RD27 |
| RSZone 1Road 27Sewage NetworkA32940 |  | Zone 1 - Road 27 - Sewage Network - UPVC Pipes 150 MM - Pipe Installation | 5d | 2025-08-26 A | 2025-08-31 A | RSZone 1Road 27Sewage NetworkA32930 | 100% |  |  |  |  | Contract Price Original Scope [1758.89 SAR]; Excavator Operator [40 h]; Crane Operator [40 h]; Equipment Operator [40 h]; Labour [15.02 h]; UPVC Pipes 150 MM [13] | 1,758.89 | 1,758.89 | RD27 |
| RSZone 1Road 27Sewage NetworkA32950 |  | Zone 1 - Road 27 - Sewage Network - UPVC Pipes 150 MM - Test | 2d | 2025-09-01 A | 2025-09-02 A | RSZone 1Road 27Sewage NetworkA32940 | 100% |  |  |  |  | Contract Price Original Scope [270.6 SAR]; Pump Operator [20 h]; Equipment Operator [20 h]; Labour [2.31 h]; UPVC Pipes 150 MM [13] | 270.6 | 270.6 | RD27 |
| RSZone 1Road 27Sewage NetworkA32960 |  | Zone 1 - Road 27 - Sewage Network - UPVC Pipes 150 MM - Backfilling | 5d | 2025-09-02 A | 2025-09-07 A | RSZone 1Road 27Sewage NetworkA32950 | 100% |  |  |  |  | Contract Price Original Scope [270.6 SAR]; Excavator Operator [20 h]; Compactor Operator [20 h]; Dump Truck Operator [20 h]; Water Truck Operator [20 h]; Labour [2.31 h]; UPVC Pipes 150 MM [13] | 270.6 | 270.6 | RD27 |
|  | 2 | **UPVC Pipes 200 MM** |  | 2026-05-20 | 2026-11-15 |  |  |  |  |  |  |  |  |  |  |
| RSZone 1Road 27Sewage NetworkA33050-old |  | Zone 1 - Road 27 - Sewage Network - UPVC Pipes 200 MM - Excavation (old) | 141d | 2026-05-20 A | 2026-11-01 A | RSZone 1Road 27Sewage NetworkA32930 | 100% |  |  |  |  | Contract Price Original Scope [1508.14 SAR]; Excavator Operator [23.6 h]; Dump Truck Operator [23.6 h]; Labour [12.88 h]; UPVC Pipes 200 MM [19.67] | 1,508.14 | 1,508.14 | RD27 |
| RSZone 1Road 27Sewage NetworkA33060-old |  | Zone 1 - Road 27 - Sewage Network - UPVC Pipes 200 MM - Pipe Installation (old) | 138d | 2026-05-24 A | 2026-11-01 A | RSZone 1Road 27Sewage NetworkA33050-old | 100% |  |  |  |  | Contract Price Original Scope [5867.21 SAR]; Excavator Operator [28.25 h]; Crane Operator [28.25 h]; Equipment Operator [28.25 h]; Labour [50.09 h]; UPVC Pipes 200 MM [17.66] | 5,867.21 | 5,867.21 | RD27 |
| RSZone 1Road 27Sewage NetworkA33070-old |  | Zone 1 - Road 27 - Sewage Network - UPVC Pipes 200 MM - Test (old) | 137d | 2026-05-25 A | 2026-11-01 A | RSZone 1Road 27Sewage NetworkA33060-old | 100% |  |  |  |  | Contract Price Original Scope [238.58 SAR]; Pump Operator [3.73 h]; Equipment Operator [3.73 h]; Labour [2.04 h]; UPVC Pipes 200 MM [4.67] | 238.58 | 238.58 | RD27 |
| RSZone 1Road 27Sewage NetworkA33080-old |  | Zone 1 - Road 27 - Sewage Network - UPVC Pipes 200 MM - Backfilling (old) | 136d | 2026-05-26 A | 2026-11-01 A | RSZone 1Road 27Sewage NetworkA33070-old | 100% |  |  |  |  | Contract Price Original Scope [238.58 SAR]; Excavator Operator [3.73 h]; Compactor Operator [3.73 h]; Dump Truck Operator [3.73 h]; Water Truck Operator [3.73 h]; Labour [2.04 h]; UPVC Pipes 200 MM [4.67] | 238.58 | 238.58 | RD27 |
| RSZone 1Road 27Sewage NetworkA33050 |  | Zone 1 - Road 27 - Sewage Network - UPVC Pipes 200 MM - Excavation | 1d | 2026-11-09 | 2026-11-09 | RSZone 1Road 27Sewage NetworkA33050-old |  |  |  | 99.97d | 0d | Contract Price Original Scope [408.99 SAR]; Excavator Operator [6.4 h]; Dump Truck Operator [6.4 h]; Labour [3.49 h]; UPVC Pipes 200 MM [5.33] | 408.99 |  | RD27 |
| RSZone 1Road 27Sewage NetworkA33060 |  | Zone 1 - Road 27 - Sewage Network - UPVC Pipes 200 MM - Pipe Installation | 1.18d | 2026-11-10 | 2026-11-11 | RSZone 1Road 27Sewage NetworkA33060-old, RSZone 1Road 27Sewage NetworkA33050 |  |  |  | 99.97d | 0d | Contract Price Original Scope [2440.34 SAR]; Excavator Operator [11.75 h]; Crane Operator [11.75 h]; Equipment Operator [11.75 h]; Labour [20.83 h]; UPVC Pipes 200 MM [7.34] | 2,440.34 |  | RD27 |
| RSZone 1Road 27Sewage NetworkA33070 |  | Zone 1 - Road 27 - Sewage Network - UPVC Pipes 200 MM - Test | 1.63d | 2026-11-11 | 2026-11-12 | RSZone 1Road 27Sewage NetworkA33070-old, RSZone 1Road 27Sewage NetworkA33060 |  |  |  | 99.97d | 0d | Contract Price Original Scope [1039.51 SAR]; Pump Operator [16.27 h]; Equipment Operator [16.27 h]; Labour [8.87 h]; UPVC Pipes 200 MM [20.33] | 1,039.51 |  | RD27 |
| RSZone 1Road 27Sewage NetworkA33080 |  | Zone 1 - Road 27 - Sewage Network - UPVC Pipes 200 MM - Backfilling | 1.63d | 2026-11-12 | 2026-11-15 | RSZone 1Road 27Sewage NetworkA33080-old, RSZone 1Road 27Sewage NetworkA33070 |  |  |  | 99.97d | 99.37d | Contract Price Original Scope [1039.51 SAR]; Excavator Operator [16.27 h]; Compactor Operator [16.27 h]; Dump Truck Operator [16.27 h]; Water Truck Operator [16.27 h]; Labour [8.87 h]; UPVC Pipes 200 MM [20.33] | 1,039.51 |  | RD27 |
|  | 10 | **Manhole** |  | 2025-08-26 | 2026-11-16 |  |  |  |  |  |  |  |  |  |  |
| RSZone 1Road 27Sewage NetworkA33870 |  | Zone 1 - Road 27 - Sewage Network - Manhole - Excavation | 5d | 2025-08-26 A | 2025-08-31 A | RSZone 1Road 27Sewage NetworkA32960 | 100% |  |  |  |  | Contract Price Original Scope [3800.57 SAR]; Excavator Operator [30 h]; Dump Truck Operator [30 h]; Labour [32.45 h]; Manholes (all depths, GRP) [2] | 3,800.57 | 3,800.57 | RD27 |
| RSZone 1Road 27Sewage NetworkA33880 |  | Zone 1 - Road 27 - Sewage Network - Manhole - FOOTING | 3.9d | 2025-09-01 A | 2025-09-04 A | RSZone 1Road 27Sewage NetworkA33870 | 100% |  |  |  |  | Contract Price Original Scope [22803.4 SAR]; Labour [194.68 h]; Manholes (all depths, GRP) [2] | 22,803.39 | 22,803.39 | RD27 |
| RSZone 1Road 27Sewage NetworkA33890 |  | Zone 1 - Road 27 - Sewage Network - Manhole - MH INSTALLATION | 3d | 2025-09-07 A | 2025-09-09 A | RSZone 1Road 27Sewage NetworkA33880 | 100% |  |  |  |  | Contract Price Original Scope [26604 SAR]; Labour [227.13 h]; Manholes (all depths, GRP) [2] | 26,603.96 | 26,603.96 | RD27 |
| RSZone 1Road 27Sewage NetworkA33900 |  | Zone 1 - Road 27 - Sewage Network - Manhole - COVER INSTALLATION | 3d | 2026-11-09 | 2026-11-11 | RSZone 1Road 27Sewage NetworkA33890 |  |  |  | 98.4d | 0d | Contract Price Original Scope [38005.7 SAR]; Labour [324.47 h]; Manholes (all depths, GRP) [10] | 38,005.65 |  | RD27 |
| RSZone 1Road 27Sewage NetworkA33910 |  | Zone 1 - Road 27 - Sewage Network - Manhole - TEST | 2d | 2026-11-12 | 2026-11-14 | RSZone 1Road 27Sewage NetworkA33900 |  |  |  | 98.4d | 0d | Contract Price Original Scope [7601.13 SAR]; Pump Operator [20 h]; Equipment Operator [20 h]; Labour [64.89 h]; Manholes (all depths, GRP) [2] | 7,601.13 |  | RD27 |
| RSZone 1Road 27Sewage NetworkA33920 |  | Zone 1 - Road 27 - Sewage Network - Manhole - BACKFILLING | 2d | 2026-11-15 | 2026-11-16 | RSZone 1Road 27Sewage NetworkA33910 |  |  |  | 98.4d | 97.8d | Contract Price Original Scope [7601.13 SAR]; Excavator Operator [20 h]; Compactor Operator [20 h]; Dump Truck Operator [20 h]; Water Truck Operator [20 h]; Labour [64.89 h]; Manholes (all depths, GRP) [2] | 7,601.13 |  | RD27 |
|  | 2 | **Potable Network** |  | 2025-11-30 | 2026-11-23 |  |  |  |  |  |  |  |  |  |  |
|  | 1 | **Buried Valves** |  | 2026-06-23 | 2026-11-23 |  |  |  |  |  |  |  |  |  |  |
| RSZone 1Road 27Potable NetworkA56070-old |  | Zone 1 - Road 27 - Potable Network - Buried Valves - Excavation (old) | 112d | 2026-06-23 A | 2026-11-01 A | RSZone 1Road 26Potable NetworkA90110-old | 100% |  |  |  |  | Contract Price Original Scope [1922.28 SAR]; Excavator Operator [24 h]; Dump Truck Operator [24 h]; Labour [16.41 h]; Buried Valves [12] | 1,922.28 | 1,922.28 | RD27 |
| RSZone 1Road 27Potable NetworkA56080-old |  | Zone 1 - Road 27 - Potable Network - Buried Valves - Installation (old) | 111d | 2026-06-24 A | 2026-11-01 A | RSZone 1Road 27Potable NetworkA56070-old | 100% |  |  |  |  | Contract Price Original Scope [24989.6 SAR]; Labour [213.35 h]; Buried Valves [12] | 24,989.6 | 24,989.6 | RD27 |
| RSZone 1Road 27Potable NetworkA56100-old |  | Zone 1 - Road 27 - Potable Network - Buried Valves - Test (old) | 110d | 2026-06-25 A | 2026-11-01 A | RSZone 1Road 27Potable NetworkA56080-old | 100% | 2026-06-25 | 2026-11-02 |  |  | Contract Price Original Scope [3203.8 SAR]; Pump Operator [6.67 h]; Equipment Operator [6.67 h]; Labour [27.35 h]; Buried Valves [5] | 3,203.8 | 3,203.8 | RD27 |
| RSZone 1Road 27Potable NetworkA56070 |  | Zone 1 - Road 27 - Potable Network - Buried Valves - Excavation | 1d | 2026-11-14 | 2026-11-14 | RSZone 1Road 27Potable NetworkA56070-old, RSZone 1Road 26Potable NetworkA90110 |  |  |  | 89.07d | 0d | Contract Price Original Scope [480.57 SAR]; Excavator Operator [6 h]; Dump Truck Operator [6 h]; Labour [4.1 h]; Buried Valves [3] | 480.57 |  | RD27 |
| RSZone 1Road 27Potable NetworkA56080 |  | Zone 1 - Road 27 - Potable Network - Buried Valves - Installation | 1d | 2026-11-15 | 2026-11-15 | RSZone 1Road 27Potable NetworkA56080-old, RSZone 1Road 27Potable NetworkA56070 |  |  |  | 89.07d | 0d | Contract Price Original Scope [6247.4 SAR]; Labour [53.34 h]; Buried Valves [3] | 6,247.4 |  | RD27 |
| RSZone 1Road 27Potable NetworkA56100 |  | Zone 1 - Road 27 - Potable Network - Buried Valves - Test | 1.33d | 2026-11-16 | 2026-11-17 | RSZone 1Road 27Potable NetworkA56100-old, RSZone 1Road 27Potable NetworkA56080 |  |  |  | 89.07d | 0d | Contract Price Original Scope [6407.59 SAR]; Pump Operator [13.33 h]; Equipment Operator [13.33 h]; Labour [54.7 h]; Buried Valves [10] | 6,407.59 |  | RD27 |
| RSZone 1Road 27Potable NetworkA56090 |  | Zone 1 - Road 27 - Potable Network - Buried Valves - Surface Box | 3d | 2026-11-17 | 2026-11-21 | RSZone 1Road 27Potable NetworkA56100, RSZone 1Road 27Potable NetworkA56070, RSZone 1Road 27Potable NetworkA56080 |  |  |  | 89.07d | 0d | Labour; Buried Valves [15] |  |  | RD27 |
| RSZone 1Road 27Potable NetworkA56110 |  | Zone 1 - Road 27 - Potable Network - Buried Valves - Backfilling | 2d | 2026-11-21 | 2026-11-23 | RSZone 1Road 27Potable NetworkA56090 |  |  |  | 89.07d | 88.87d | Contract Price Original Scope [4805.69 SAR]; Excavator Operator [20 h]; Compactor Operator [20 h]; Dump Truck Operator [20 h]; Water Truck Operator [20 h]; Labour [41.03 h]; Buried Valves [15] | 4,805.69 |  | RD27 |

| ID | WBS | Activity | Duration | Start | Finish | Predecessors | Complete | Planned start | Planned finish | Total float | Free float | Resources | Cost | Actual cost | MODON |
| --- | --- | --- | --- | --- | --- | --- | --- | --- | --- | --- | --- | --- | --- | --- | --- |
|  | 2 | **Buried Valves 2** |  | 2026-08-31 | 2026-11-16 |  |  |  |  |  |  |  |  |  |  |
| RSZone 1Road 27Irrigation NetworkA94820 |  | Zone 1 - Road 27 - Lateral Irrigation Network - Buried Valves 2 - Excavation | 3d | 2026-08-31 A | 2026-09-02 A | RSZone 1Road 26Irrigation NetworkA90130 | 100% |  |  |  |  | Contract Price Original Scope [672.57 SAR]; Excavator Operator [30 h]; Dump Truck Operator [30 h]; Labour [5.74 h]; Buried Valves [10] | 672.57 | 672.57 | RD27 |
| RSZone 1Road 27Irrigation NetworkA94830 |  | Zone 1 - Road 27 - Lateral Irrigation Network - Buried Valves 2 - Installation | 3d | 2026-09-03 A | 2026-09-06 A | RSZone 1Road 27Irrigation NetworkA94820, RSZone 1Road 27Irrigation NetworkA94820 FF | 100% | 2026-09-03 | 2026-09-07 |  |  | Contract Price Original Scope [8743.36 SAR]; Labour [74.65 h]; Buried Valves [10] | 8,743.36 | 8,743.36 | RD27 |
| RSZone 1Road 27Irrigation NetworkA94840 |  | Zone 1 - Road 27 - Lateral Irrigation Network - Buried Valves 2 - Surface Box | 3d | 2026-11-09 | 2026-11-11 | RSZone 1Road 27Irrigation NetworkA94830 |  |  |  | 94.4d | 0d | Labour; Buried Valves [10] |  |  | RD27 |
| RSZone 1Road 27Irrigation NetworkA94850 |  | Zone 1 - Road 27 - Lateral Irrigation Network - Buried Valves 2 - Test | 2d | 2026-11-12 | 2026-11-14 | RSZone 1Road 27Irrigation NetworkA94840 |  |  |  | 94.4d | 0d | Contract Price Original Scope [2690.26 SAR]; Pump Operator [20 h]; Equipment Operator [20 h]; Labour [22.97 h]; Buried Valves [10] | 2,690.26 |  | RD27 |
| RSZone 1Road 27Irrigation NetworkA94860 |  | Zone 1 - Road 27 - Lateral Irrigation Network - Buried Valves 2 - Backfilling | 2d | 2026-11-15 | 2026-11-16 | RSZone 1Road 27Irrigation NetworkA94850 |  |  |  | 94.4d | 93.76d | Contract Price Original Scope [1345.13 SAR]; Excavator Operator [20 h]; Compactor Operator [20 h]; Dump Truck Operator [20 h]; Water Truck Operator [20 h]; Labour [11.48 h]; Buried Valves [10] | 1,345.13 |  | RD27 |
|  | 7 | **FIRE HYDRANT** |  | 2025-11-30 | 2026-11-16 |  |  |  |  |  |  |  |  |  |  |
| RSZone 1Road 27Potable NetworkA57720 |  | Zone 1 - Road 27 - Potable Network - FIRE HYDRANT - Excavation | 4d | 2025-11-30 A | 2025-12-03 A | RSZone 1Road 25Potable NetworkA57360 | 100% |  |  |  |  | Contract Price Original Scope [8323.69 SAR]; Excavator Operator [30 h]; Dump Truck Operator [30 h]; Labour [71.06 h]; Fire Hydrant [6] | 8,323.69 | 8,323.69 | RD27 |
| RSZone 1Road 27Potable NetworkA57730 |  | Zone 1 - Road 27 - Potable Network - FIRE HYDRANT - Buried Gate Valve Installation | 4d | 2025-12-04 A | 2025-12-08 A | RSZone 1Road 27Potable NetworkA57720 | 100% | 2025-12-04 | 2025-12-09 |  |  | Labour; Fire Hydrant [6] |  |  | RD27 |
| RSZone 1Road 27Potable NetworkA57740 |  | Zone 1 - Road 27 - Potable Network - FIRE HYDRANT - Fire Hydrant Installation | 2.9d | 2025-12-09 A | 2025-12-11 A | RSZone 1Road 27Potable NetworkA57730 | 100% |  |  |  |  | Contract Price Original Scope [60762.9 SAR]; Labour [518.76 h]; Fire Hydrant [6] | 60,762.95 | 60,762.95 | RD27 |
| RSZone 1Road 27Potable NetworkA57750 |  | Zone 1 - Road 27 - Potable Network - FIRE HYDRANT - Surface Box | 3d | 2026-11-09 | 2026-11-11 | RSZone 1Road 27Potable NetworkA57740 |  |  |  | 94.4d | 0d | Labour; Fire Hydrant [6] |  |  | RD27 |
| RSZone 1Road 27Potable NetworkA57760 |  | Zone 1 - Road 27 - Potable Network - FIRE HYDRANT - Test | 2d | 2026-11-12 | 2026-11-14 | RSZone 1Road 27Potable NetworkA57750 |  |  |  | 94.4d | 0d | Contract Price Original Scope [5826.58 SAR]; Pump Operator [20 h]; Equipment Operator [20 h]; Labour [49.74 h]; Fire Hydrant [6] | 5,826.58 |  | RD27 |
| RSZone 1Road 27Potable NetworkA57770 |  | Zone 1 - Road 27 - Potable Network - FIRE HYDRANT - Backfilling | 2d | 2026-11-15 | 2026-11-16 | RSZone 1Road 27Potable NetworkA57760 |  |  |  | 94.4d | 94.2d | Contract Price Original Scope [8323.69 SAR]; Excavator Operator [20 h]; Compactor Operator [20 h]; Dump Truck Operator [20 h]; Water Truck Operator [20 h]; Labour [71.06 h]; Fire Hydrant [6] | 8,323.69 |  | RD27 |
|  | 6 | **Lateral Irrigation Network** |  | 2026-07-19 | 2026-07-22 |  |  |  |  |  |  |  |  |  |  |
|  | 1 | **HDPE Fitting** |  | 2026-07-19 | 2026-07-20 |  |  |  |  |  |  |  |  |  |  |
|  | 2 | **Tees** |  | 2026-07-19 | 2026-07-20 |  |  |  |  |  |  |  |  |  |  |
| RSZone 1Road 27Irrigation NetworkA90180 |  | Zone 1 - Road 27 - Lateral Irrigation Network - Tees - Installation | 2d | 2026-07-19 A | 2026-07-20 A | RSZone 1Road 27Irrigation NetworkA94830 | 100% |  |  |  |  | Contract Price Original Scope [1536.06 SAR]; Labour [13.11 h]; Fittings - Tees (all sizes) [1] | 1,536.06 | 1,536.06 | RD27 |
|  | 4 | **Thrust Block** |  | 2026-07-21 | 2026-07-22 |  |  |  |  |  |  |  |  |  |  |
| RSZone 1Road 27Irrigation NetworkA90200 |  | Zone 1 - Road 27 - Lateral Irrigation Network - Thrust Block - Thrust Block | 2d | 2026-07-21 A | 2026-07-22 A | RSZone 1Road 27Irrigation NetworkA90180 | 100% |  |  |  |  | Contract Price Original Scope [1021.76 SAR]; Crane Operator [12 h]; Pump Operator [12 h]; Equipment Operator [12 h]; Labour [8.72 h]; Thrust Blocks [1] | 1,021.76 | 1,021.76 | RD27 |
|  | 12 | **Telecom Network** |  | 2026-07-08 | 2026-11-24 |  |  |  |  |  |  |  |  |  |  |
|  | 1 | **Telecom Pipe** |  | 2026-07-08 | 2026-11-22 |  |  |  |  |  |  |  |  |  |  |
| RSZone 1Road 27Telecom NetworkA60480-old |  | Zone 1 - Road 27 - Telecom Network - Telecom Pipe - Excavation (old) | 99d | 2026-07-08 A | 2026-11-01 A | RSZone 1Road 26Telecom NetworkA68240-old | 100% |  |  |  |  | Contract Price Original Scope [1011.16 SAR]; Excavator Operator [2.55 h]; Dump Truck Operator [2.55 h]; Labour [8.63 h]; Telecom Pipe [46.92] | 1,011.16 | 1,011.16 | RD27 |
| RSZone 1Road 27Telecom NetworkA60490-old |  | Zone 1 - Road 27 - Telecom Network - Telecom Pipe - Concrete Pouring (old) | 96d | 2026-07-12 A | 2026-11-01 A | RSZone 1Road 27Telecom NetworkA60480-old | 100% |  |  |  |  | Contract Price Original Scope [7046.07 SAR]; Crane Operator [1.1 h]; Pump Operator [1.1 h]; Equipment Operator [1.1 h]; Labour [60.16 h]; Telecom Pipe [46.71] | 7,046.07 | 7,046.07 | RD27 |
| RSZone 1Road 27Telecom NetworkA60480 |  | Zone 1 - Road 27 - Telecom Network - Telecom Pipe - Excavation | 2.75d | 2026-11-14 | 2026-11-16 | RSZone 1Road 27Telecom NetworkA60480-old, RSZone 1Road 26Telecom NetworkA68240 |  |  |  | 87.58d | 0d | Contract Price Original Scope [10884.8 SAR]; Excavator Operator [27.45 h]; Dump Truck Operator [27.45 h]; Labour [92.93 h]; Telecom Pipe [505.08] | 10,884.81 |  | RD27 |
| RSZone 1Road 27Telecom NetworkA60490 |  | Zone 1 - Road 27 - Telecom Network - Telecom Pipe - Concrete Pouring | 1.19d | 2026-11-16 | 2026-11-17 | RSZone 1Road 27Telecom NetworkA60490-old, RSZone 1Road 27Telecom NetworkA60480 |  |  |  | 87.58d | 0d | Contract Price Original Scope [76225.7 SAR]; Crane Operator [11.9 h]; Pump Operator [11.9 h]; Equipment Operator [11.9 h]; Labour [650.78 h]; Telecom Pipe [505.29] | 76,225.7 |  | RD27 |
| RSZone 1Road 27Telecom NetworkA60500 |  | Zone 1 - Road 27 - Telecom Network - Telecom Pipe - Test | 2d | 2026-11-17 | 2026-11-19 | RSZone 1Road 27Telecom NetworkA60490 |  |  |  | 94.47d | 0d | Contract Price Original Scope [11896 SAR]; Pump Operator [20 h]; Equipment Operator [20 h]; Labour [101.56 h]; Telecom Pipe [552] | 11,895.97 |  | RD27 |
| RSZone 1Road 27Telecom NetworkA60510 |  | Zone 1 - Road 27 - Telecom Network - Telecom Pipe - Backfilling | 2d | 2026-11-19 | 2026-11-22 | RSZone 1Road 27Telecom NetworkA60500, RSZone 1Road 27Telecom NetworkA60480 |  |  |  | 94.47d | 94.06d | Contract Price Original Scope [11896 SAR]; Excavator Operator [20 h]; Compactor Operator [20 h]; Dump Truck Operator [20 h]; Water Truck Operator [20 h]; Labour [101.56 h]; Telecom Pipe [552] | 11,895.97 |  | RD27 |

| ID | WBS | Activity | Duration | Start | Finish | Predecessors | Complete | Planned start | Planned finish | Total float | Free float | Resources | Cost | Actual cost | MODON |
| --- | --- | --- | --- | --- | --- | --- | --- | --- | --- | --- | --- | --- | --- | --- | --- |
|  | 12 | **Telecom Duct** |  | 2026-07-13 | 2026-11-24 |  |  |  |  |  |  |  |  |  |  |
| RSZone 1Road 27Telecom NetworkA65320-old |  | Zone 1 - Road 27 - Telecom Network - Telecom Duct - Excavation (old) | 95d | 2026-07-13 A | 2026-11-01 A | RSZone 1Road 27Telecom NetworkA65330-old | 100% |  |  |  |  | Contract Price Original Scope [1883.36 SAR]; Excavator Operator [29.83 h]; Dump Truck Operator [29.83 h]; Labour [16.08 h]; Telecom Duct (Road Crossing) [86.52] | 1,883.36 | 1,883.36 | RD27 |
| RSZone 1Road 27Telecom NetworkA65330-old |  | Zone 1 - Road 27 - Telecom Network - Telecom Duct - Concrete Pouring (old) | 93d | 2026-07-15 A | 2026-11-01 A | RSZone 1Road 27Telecom NetworkA60490-old | 100% |  |  |  |  | Contract Price Original Scope [26356.5 SAR]; Crane Operator [13.92 h]; Pump Operator [13.92 h]; Equipment Operator [13.92 h]; Labour [225.02 h]; Telecom Duct (Road Crossing) [86.48] | 26,356.48 | 26,356.48 | RD27 |
| RSZone 1Road 27Telecom NetworkA65330 |  | Zone 1 - Road 27 - Telecom Network - Telecom Duct - Concrete Pouring | 1d | 2026-11-17 | 2026-11-18 | RSZone 1Road 27Telecom NetworkA65330-old, RSZone 1Road 27Telecom NetworkA60490 |  |  |  | 87.58d | 0d | Contract Price Original Scope [157.82 SAR]; Crane Operator [0.08 h]; Pump Operator [0.08 h]; Equipment Operator [0.08 h]; Labour [1.35 h]; Telecom Duct (Road Crossing) [0.52] | 157.82 |  | RD27 |
| RSZone 1Road 27Telecom NetworkA65320 |  | Zone 1 - Road 27 - Telecom Network - Telecom Duct - Excavation | 1d | 2026-11-18 | 2026-11-19 | RSZone 1Road 27Telecom NetworkA65320-old, RSZone 1Road 27Telecom NetworkA65330 |  |  |  | 87.58d | 0d | Contract Price Original Scope [10.52 SAR]; Excavator Operator [0.17 h]; Dump Truck Operator [0.17 h]; Labour [0.09 h]; Telecom Duct (Road Crossing) [0.48] | 10.52 |  | RD27 |
| RSZone 1Road 27Telecom NetworkA65340 |  | Zone 1 - Road 27 - Telecom Network - Telecom Duct - Test | 2d | 2026-11-19 | 2026-11-22 | RSZone 1Road 27Telecom NetworkA65320, RSZone 1Road 27Telecom NetworkA65330 |  |  |  | 92.47d | 0d | Contract Price Original Scope [3787.76 SAR]; Pump Operator [20 h]; Equipment Operator [20 h]; Labour [32.34 h]; Telecom Duct (Road Crossing) [87] | 3,787.76 |  | RD27 |
| RSZone 1Road 27Telecom NetworkA65350 |  | Zone 1 - Road 27 - Telecom Network - Telecom Duct - Backfilling | 2d | 2026-11-22 | 2026-11-24 | RSZone 1Road 27Telecom NetworkA65340 |  |  |  | 92.47d | 92.06d | Contract Price Original Scope [5681.64 SAR]; Excavator Operator [20 h]; Compactor Operator [20 h]; Dump Truck Operator [20 h]; Water Truck Operator [20 h]; Labour [48.51 h]; Telecom Duct (Road Crossing) [87] | 5,681.64 |  | RD27 |
|  | 2 | **TELECOM MANHOLE** |  | 2026-07-20 | 2026-11-14 |  |  |  |  |  |  |  |  |  |  |
| RSZone 1Road 27Telecom NetworkA68360-old |  | Zone 1 - Road 27 - Telecom Network - TELECOM MANHOLE - Manhole Installation (old) | 89d | 2026-07-20 A | 2026-11-01 A | RSZone 1Road 26Telecom NetworkA68240-old | 100% |  |  |  |  | Contract Price Original Scope [57030.7 SAR]; Crane Operator [13.3 h]; Boom Truck Operator [13.3 h]; Equipment Operator [13.3 h]; Labour [486.9 h]; Telecom Manhole [3.8] | 57,030.67 | 57,030.67 | RD27 |
| RSZone 1Road 27Telecom NetworkA68360 |  | Zone 1 - Road 27 - Telecom Network - TELECOM MANHOLE - Manhole Installation | 1d | 2026-11-14 | 2026-11-14 | RSZone 1Road 27Telecom NetworkA68360-old, RSZone 1Road 26Telecom NetworkA68240 |  |  |  | 76.4d | 0d | Contract Price Original Scope [3001.61 SAR]; Crane Operator [0.7 h]; Boom Truck Operator [0.7 h]; Equipment Operator [0.7 h]; Labour [25.63 h]; Telecom Manhole [0.2] | 3,001.61 |  | RD27 |
|  | 14 | **Road 28** |  | 2025-06-30 | 2027-02-18 |  |  |  |  |  |  |  |  |  |  |
|  | 9 | **Storm Network** |  | 2025-09-08 | 2027-02-18 |  |  |  |  |  |  |  |  |  |  |
|  | 1 | **Collection Pipes 150 MM** |  | 2025-09-08 | 2026-11-12 |  |  |  |  |  |  |  |  |  |  |
| RSZone 1Road 28Storm NetworkA36290 |  | Zone 1 - Road 28 - Storm Network - Collection Pipes 150 MM - Excavation | 3.9d | 2025-09-08 A | 2025-09-11 A | RSZone 1Road 27Storm NetworkA41230 | 100% |  |  |  |  | Contract Price Original Scope [841.12 SAR]; Excavator Operator [30 h]; Dump Truck Operator [30 h]; Labour [7.18 h]; Collection Pipes 150 MM [176] | 841.12 | 841.12 | RD28 |
| RSZone 1Road 28Storm NetworkA36300 |  | Zone 1 - Road 28 - Storm Network - Collection Pipes 150 MM - Bedding | 2d | 2025-09-14 A | 2025-09-15 A | RSZone 1Road 28Storm NetworkA36290 | 100% |  |  |  |  | Contract Price Original Scope [420.56 SAR]; Compactor Operator [20 h]; Equipment Operator [20 h]; Water Truck Operator [20 h]; Labour [3.59 h]; Collection Pipes 150 MM [176] | 420.56 | 420.56 | RD28 |
| RSZone 1Road 28Storm NetworkA36310 |  | Zone 1 - Road 28 - Storm Network - Collection Pipes 150 MM - Pipe Installation | 5d | 2025-09-16 A | 2025-09-22 A | RSZone 1Road 28Storm NetworkA36300 | 100% | 2025-09-16 | 2025-09-21 |  |  | Contract Price Original Scope [5467.26 SAR]; Excavator Operator [40 h]; Crane Operator [40 h]; Equipment Operator [40 h]; Labour [46.68 h]; Collection Pipes 150 MM [176] | 5,467.26 | 5,467.26 | RD28 |
| RSZone 1Road 28Storm NetworkA36320 |  | Zone 1 - Road 28 - Storm Network - Collection Pipes 150 MM - Test | 2d | 2026-11-09 | 2026-11-10 | RSZone 1Road 28Storm NetworkA36310 |  |  |  | 121.4d | 0d | Contract Price Original Scope [841.12 SAR]; Pump Operator [20 h]; Equipment Operator [20 h]; Labour [7.18 h]; Collection Pipes 150 MM [176] | 841.12 |  | RD28 |
| RSZone 1Road 28Storm NetworkA36330 |  | Zone 1 - Road 28 - Storm Network - Collection Pipes 150 MM - Backfilling | 2d | 2026-11-11 | 2026-11-12 | RSZone 1Road 28Storm NetworkA36320 |  |  |  | 121.4d | 107d | Contract Price Original Scope [841.12 SAR]; Excavator Operator [20 h]; Compactor Operator [20 h]; Dump Truck Operator [20 h]; Water Truck Operator [20 h]; Labour [7.18 h]; Collection Pipes 150 MM [176] | 841.12 |  | RD28 |
|  | 2 | **Perforated 160 mm** |  | 2025-10-09 | 2026-11-10 |  |  |  |  |  |  |  |  |  |  |
| RSZone 1Road 28Storm NetworkA50090 |  | Zone 1 - Road 28 - Storm Network - Perforated 160 mm - Excavation | 6d | 2025-10-09 A | 2025-10-15 A | RSZone 1Road 28Storm NetworkA36310 | 100% | 2025-10-09 | 2025-10-16 |  |  | Contract Price Original Scope [25732.9 SAR]; Excavator Operator [30 h]; Dump Truck Operator [30 h]; Labour [219.69 h]; Perforated 160 mm [1610] | 25,732.89 | 25,732.89 | RD28 |
| RSZone 1Road 28Storm NetworkA50100 |  | Zone 1 - Road 28 - Storm Network - Perforated 160 mm - Bedding | 4d | 2025-10-16 A | 2025-10-20 A | RSZone 1Road 28Storm NetworkA50090 | 100% | 2025-10-16 | 2025-10-21 |  |  | Contract Price Original Scope [12866.5 SAR]; Compactor Operator [20 h]; Equipment Operator [20 h]; Water Truck Operator [20 h]; Labour [109.85 h]; Perforated 160 mm [1610] | 12,866.45 | 12,866.45 | RD28 |
| RSZone 1Road 28Storm NetworkA50110 |  | Zone 1 - Road 28 - Storm Network - Perforated 160 mm - Pipe Installation | 2.9d | 2025-10-21 A | 2025-10-23 A | RSZone 1Road 28Storm NetworkA50100 | 100% |  |  |  |  | Contract Price Original Scope [167264 SAR]; Excavator Operator [40 h]; Crane Operator [40 h]; Equipment Operator [40 h]; Labour [1428.01 h]; Perforated 160 mm [1610] | 167,263.8 | 167,263.8 | RD28 |
| RSZone 1Road 28Storm NetworkA50130 |  | Zone 1 - Road 28 - Storm Network - Perforated 160 mm - Backfilling | 2d | 2025-10-26 A | 2025-10-27 A | RSZone 1Road 28Storm NetworkA50110 | 100% |  |  |  |  | Contract Price Original Scope [25732.9 SAR]; Excavator Operator [20 h]; Compactor Operator [20 h]; Dump Truck Operator [20 h]; Water Truck Operator [20 h]; Labour [219.69 h]; Perforated 160 mm [1610] | 25,732.89 | 25,732.89 | RD28 |
| RSZone 1Road 28Storm NetworkA50120 |  | Zone 1 - Road 28 - Storm Network - Perforated 160 mm - Test | 2d | 2026-11-09 | 2026-11-10 | RSZone 1Road 28Storm NetworkA50130 |  |  |  | 123.4d | 109d | Contract Price Original Scope [25732.9 SAR]; Pump Operator [20 h]; Equipment Operator [20 h]; Labour [219.69 h]; Perforated 160 mm [1610] | 25,732.89 |  | RD28 |

| ID | WBS | Activity | Duration | Start | Finish | Predecessors | Complete | Planned start | Planned finish | Total float | Free float | Resources | Cost | Actual cost | MODON |
| --- | --- | --- | --- | --- | --- | --- | --- | --- | --- | --- | --- | --- | --- | --- | --- |
|  | 6 | **Box Culvert** |  | 2027-02-02 | 2027-02-18 |  |  |  |  |  |  |  |  |  |  |
| RSZone 1Road 28Storm NetworkA39890 |  | Zone 1 - Road 28 - Storm Network - Box Culvert - Excavation | 5d | 2027-02-02 | 2027-02-07 | RSZone 1Road 27Storm NetworkA94750 |  |  |  | 14.4d | 0d | Contract Price Original Scope [36201.3 SAR]; Excavator Operator [30 h]; Dump Truck Operator [30 h]; Labour [309.07 h]; Box Culvert (all sizes/depths) [84] | 36,201.31 |  | RD28 |
| RSZone 1Road 28Storm NetworkA39910 |  | Zone 1 - Road 28 - Storm Network - Box Culvert - SLAB INSTALLATIO | 3d | 2027-02-08 | 2027-02-10 | RSZone 1Road 28Storm NetworkA39890 |  |  |  | 37.4d | 0d | Contract Price Original Scope [72402.6 SAR]; Crane Operator [6 h]; Pump Operator [6 h]; Equipment Operator [6 h]; Labour [618.14 h]; Box Culvert (all sizes/depths) [84] | 72,402.61 |  | RD28 |
| RSZone 1Road 28Storm NetworkA39900 |  | Zone 1 - Road 28 - Storm Network - Box Culvert - Installation | 3d | 2027-02-11 | 2027-02-14 | RSZone 1Road 28Storm NetworkA39910 |  |  |  | 37.4d | 0d | Contract Price Original Scope [181007 SAR]; Crane Operator [6 h]; Equipment Operator [6 h]; Labour [1545.34 h]; Box Culvert (all sizes/depths) [84] | 181,006.53 |  | RD28 |
| RSZone 1Road 28Storm NetworkA39920 |  | Zone 1 - Road 28 - Storm Network - Box Culvert - TEST | 2d | 2027-02-15 | 2027-02-16 | RSZone 1Road 28Storm NetworkA39900 |  |  |  | 37.4d | 0d | Contract Price Original Scope [36201.3 SAR]; Pump Operator [20 h]; Equipment Operator [20 h]; Labour [309.07 h]; Box Culvert (all sizes/depths) [84] | 36,201.31 |  | RD28 |
| RSZone 1Road 28Storm NetworkA39930 |  | Zone 1 - Road 28 - Storm Network - Box Culvert - BACKFILLING | 2d | 2027-02-17 | 2027-02-18 | RSZone 1Road 28Storm NetworkA39920 |  |  |  | 37.4d | 23d | Contract Price Original Scope [36201.3 SAR]; Excavator Operator [20 h]; Compactor Operator [20 h]; Dump Truck Operator [20 h]; Water Truck Operator [20 h]; Labour [309.07 h]; Box Culvert (all sizes/depths) [84] | 36,201.31 |  | RD28 |
|  | 8 | **Manhole** |  | 2025-09-14 | 2026-11-19 |  |  |  |  |  |  |  |  |  |  |
| RSZone 1Road 28Storm NetworkA41280 |  | Zone 1 - Road 28 - Storm Network - Manhole - Excavation | 4d | 2025-09-14 A | 2025-09-17 A | RSZone 1Road 28Storm NetworkA50130 | 100% |  |  |  |  | Contract Price Original Scope [2777.85 SAR]; Excavator Operator [30 h]; Dump Truck Operator [30 h]; Labour [23.72 h]; Manholes GRP (new + DI cover only) [2] | 2,777.85 | 2,777.85 | RD28 |
| RSZone 1Road 28Storm NetworkA41290 |  | Zone 1 - Road 28 - Storm Network - Manhole - FOOTING | 3d | 2025-09-18 A | 2025-09-22 A | RSZone 1Road 28Storm NetworkA41280 | 100% | 2025-09-18 | 2025-09-23 |  |  | Contract Price Original Scope [16667.1 SAR]; Crane Operator [7 h]; Pump Operator [7 h]; Equipment Operator [7 h]; Labour [142.3 h]; Manholes GRP (new + DI cover only) [2] | 16,667.12 | 16,667.12 | RD28 |
| RSZone 1Road 28Storm NetworkA41300 |  | Zone 1 - Road 28 - Storm Network - Manhole - MH INSTALLATION | 2.9d | 2025-09-23 A | 2025-09-25 A | RSZone 1Road 28Storm NetworkA41290 | 100% |  |  |  |  | Contract Price Original Scope [16667.1 SAR]; Crane Operator [7 h]; Boom Truck Operator [7 h]; Equipment Operator [7 h]; Labour [142.3 h]; Manholes GRP (new + DI cover only) [2] | 16,667.12 | 16,667.12 | RD28 |
| RSZone 1Road 28Storm NetworkA41310 |  | Zone 1 - Road 28 - Storm Network - Manhole - CONCRETE SLAB | 3d | 2026-11-09 | 2026-11-11 | RSZone 1Road 28Storm NetworkA41300 |  |  |  | 115.4d | 0d | Contract Price Original Scope [2777.85 SAR]; Crane Operator [7 h]; Pump Operator [7 h]; Equipment Operator [7 h]; Labour [23.72 h]; Manholes GRP (new + DI cover only) [2] | 2,777.85 |  | RD28 |
| RSZone 1Road 28Storm NetworkA41320 |  | Zone 1 - Road 28 - Storm Network - Manhole - COVER INSTALLATION | 3d | 2026-11-12 | 2026-11-15 | RSZone 1Road 28Storm NetworkA41310 |  |  |  | 115.4d | 0d | Contract Price Original Scope [19445 SAR]; Crane Operator [7 h]; Boom Truck Operator [7 h]; Equipment Operator [7 h]; Labour [166.01 h]; Manholes GRP (new + DI cover only) [7] | 19,444.97 |  | RD28 |
| RSZone 1Road 28Storm NetworkA41330 |  | Zone 1 - Road 28 - Storm Network - Manhole - TEST | 2d | 2026-11-16 | 2026-11-17 | RSZone 1Road 28Storm NetworkA41320 |  |  |  | 115.4d | 0d | Contract Price Original Scope [5555.71 SAR]; Pump Operator [20 h]; Equipment Operator [20 h]; Labour [47.43 h]; Manholes GRP (new + DI cover only) [2] | 5,555.71 |  | RD28 |
| RSZone 1Road 28Storm NetworkA41340 |  | Zone 1 - Road 28 - Storm Network - Manhole - BACKFILLING | 2d | 2026-11-18 | 2026-11-19 | RSZone 1Road 28Storm NetworkA41330 |  |  |  | 115.4d | 101d | Contract Price Original Scope [5555.71 SAR]; Excavator Operator [20 h]; Compactor Operator [20 h]; Dump Truck Operator [20 h]; Water Truck Operator [20 h]; Labour [47.43 h]; Manholes GRP (new + DI cover only) [2] | 5,555.71 |  | RD28 |
|  | 11 | **Gravel and Geotextile** |  | 2025-10-27 | 2025-10-28 |  |  |  |  |  |  |  |  |  |  |
| RSZone 1Road 28Storm NetworkA52400 |  | Zone 1 - Road 28 - Storm Network - Gravel and Geotextile - Installation | 2d | 2025-10-27 A | 2025-10-28 A | RSZone 1Road 28Storm NetworkA46980 | 100% |  |  |  |  | Contract Price Original Scope [188850 SAR]; Excavator Operator [7 h]; Dump Truck Operator [7 h]; Equipment Operator [7 h]; Water Truck Operator [7 h]; Labour [1612.31 h]; Gravel and Geotextile [1610] | 188,850.21 | 188,850.21 | RD28 |
|  | 9 | **Collection Chamber** |  | 2025-11-13 | 2026-11-28 |  |  |  |  |  |  |  |  |  |  |
| RSZone 1Road 28Storm NetworkA46940 |  | Zone 1 - Road 28 - Storm Network - Collection Chamber - Excavation | 6d | 2025-11-13 A | 2025-11-19 A | RSZone 1Road 28Storm NetworkA41300 | 100% | 2025-11-13 | 2025-11-20 |  |  | Contract Price Original Scope [3875.41 SAR]; Excavator Operator [30 h]; Dump Truck Operator [30 h]; Labour [33.09 h]; Collection Chamber [5] | 3,875.41 | 3,875.41 | RD28 |
| RSZone 1Road 28Storm NetworkA46950 |  | Zone 1 - Road 28 - Storm Network - Collection Chamber - Installation | 3d | 2025-11-20 A | 2025-11-23 A | RSZone 1Road 28Storm NetworkA46940 | 100% | 2025-11-20 | 2025-11-24 |  |  | Contract Price Original Scope [15501.6 SAR]; Crane Operator [7 h]; Boom Truck Operator [7 h]; Equipment Operator [7 h]; Labour [132.35 h]; Collection Chamber [5] | 15,501.65 | 15,501.65 | RD28 |
| RSZone 1Road 28Storm NetworkA46980 |  | Zone 1 - Road 28 - Storm Network - Collection Chamber - Backfilling | 2.9d | 2025-11-25 A | 2025-11-27 A | RSZone 1Road 28Storm NetworkA46950 | 100% |  |  |  |  | Contract Price Original Scope [1291.8 SAR]; Excavator Operator [20 h]; Compactor Operator [20 h]; Dump Truck Operator [20 h]; Water Truck Operator [20 h]; Labour [11.03 h]; Collection Chamber [5] | 1,291.8 | 1,291.8 | RD28 |
| RSZone 1Road 28Storm NetworkA46960-old |  | Zone 1 - Road 28 - Storm Network - Collection Chamber - D.I (old) | 126d | 2026-06-07 A | 2026-11-01 A | RSZone 1Road 28Storm NetworkA46980, RSZone 1Road 27Storm NetworkA46460-old | 100% |  |  |  |  | Contract Price Original Scope [516.72 SAR]; Crane Operator [1.4 h]; Boom Truck Operator [1.4 h]; Equipment Operator [1.4 h]; Labour [4.41 h]; Collection Chamber [1] | 516.72 | 516.72 | RD28 |
| RSZone 1Road 28Storm NetworkA46960 |  | Zone 1 - Road 28 - Storm Network - Collection Chamber - D.I | 2.4d | 2026-11-23 | 2026-11-25 | RSZone 1Road 28Storm NetworkA46960-old, RSZone 1Road 27Storm NetworkA46460 |  |  |  | 94.71d | 0d | Contract Price Original Scope [2066.89 SAR]; Crane Operator [5.6 h]; Boom Truck Operator [5.6 h]; Equipment Operator [5.6 h]; Labour [17.65 h]; Collection Chamber [4] | 2,066.89 |  | RD28 |
| RSZone 1Road 28Storm NetworkA46970 |  | Zone 1 - Road 28 - Storm Network - Collection Chamber - Inner Isolation | 2d | 2026-11-25 | 2026-11-28 | RSZone 1Road 28Storm NetworkA46960 |  |  |  | 108.98d | 94.58d | Contract Price Original Scope [2583.61 SAR]; Equipment Operator [20 h]; Labour [22.06 h]; Collection Chamber [5] | 2,583.61 |  | RD28 |
|  | 3 | **Sewage Network** |  | 2025-08-28 | 2026-11-16 |  |  |  |  |  |  |  |  |  |  |
|  | 1 | **UPVC Pipes** |  | 2026-05-21 | 2026-11-15 |  |  |  |  |  |  |  |  |  |  |
|  | 2 | **UPVC Pipes 200 MM** |  | 2026-05-21 | 2026-11-15 |  |  |  |  |  |  |  |  |  |  |
| RSZone 1Road 28Sewage NetworkA33330-old |  | Zone 1 - Road 28 - Sewage Network - UPVC Pipes 200 MM - Excavation (old) | 140d | 2026-05-21 A | 2026-11-01 A | RSZone 1Road 27Sewage NetworkA33870 | 100% | 2026-05-21 | 2026-11-02 |  |  | Contract Price Original Scope [7341.32 SAR]; Excavator Operator [23.93 h]; Dump Truck Operator [23.93 h]; Labour [62.68 h]; UPVC Pipes 200 MM [95.73] | 7,341.32 | 7,341.32 | RD28 |
| RSZone 1Road 28Sewage NetworkA33340-old |  | Zone 1 - Road 28 - Sewage Network - UPVC Pipes 200 MM - Pipe Installation (old) | 138d | 2026-05-24 A | 2026-11-01 A | RSZone 1Road 28Sewage NetworkA33330-old | 100% |  |  |  |  | Contract Price Original Scope [28478.3 SAR]; Excavator Operator [28.57 h]; Crane Operator [28.57 h]; Equipment Operator [28.57 h]; Labour [243.13 h]; UPVC Pipes 200 MM [85.7] | 28,478.28 | 28,478.28 | RD28 |
| RSZone 1Road 28Sewage NetworkA33350-old |  | Zone 1 - Road 28 - Sewage Network - UPVC Pipes 200 MM - Test (old) | 136d | 2026-05-26 A | 2026-11-01 A | RSZone 1Road 28Sewage NetworkA33340-old | 100% |  |  |  |  | Contract Price Original Scope [1109.38 SAR]; Pump Operator [3.62 h]; Equipment Operator [3.62 h]; Labour [9.47 h]; UPVC Pipes 200 MM [21.7] | 1,109.38 | 1,109.38 | RD28 |
| RSZone 1Road 28Sewage NetworkA33360-old |  | Zone 1 - Road 28 - Sewage Network - UPVC Pipes 200 MM - Backfilling (old) | 135d | 2026-05-27 A | 2026-11-01 A | RSZone 1Road 28Sewage NetworkA33350-old | 100% |  |  |  |  | Contract Price Original Scope [1109.38 SAR]; Excavator Operator [3.62 h]; Compactor Operator [3.62 h]; Dump Truck Operator [3.62 h]; Water Truck Operator [3.62 h]; Labour [9.47 h]; UPVC Pipes 200 MM [21.7] | 1,109.38 | 1,109.38 | RD28 |
| RSZone 1Road 28Sewage NetworkA33330 |  | Zone 1 - Road 28 - Sewage Network - UPVC Pipes 200 MM - Excavation | 1d | 2026-11-09 | 2026-11-09 | RSZone 1Road 28Sewage NetworkA33330-old |  |  |  | 99.98d | 0d | Contract Price Original Scope [1860.89 SAR]; Excavator Operator [6.07 h]; Dump Truck Operator [6.07 h]; Labour [15.89 h]; UPVC Pipes 200 MM [24.27] | 1,860.89 |  | RD28 |
| RSZone 1Road 28Sewage NetworkA33340 |  | Zone 1 - Road 28 - Sewage Network - UPVC Pipes 200 MM - Pipe Installation | 1.14d | 2026-11-10 | 2026-11-11 | RSZone 1Road 28Sewage NetworkA33340-old, RSZone 1Road 28Sewage NetworkA33330 |  |  |  | 99.98d | 0d | Contract Price Original Scope [11398 SAR]; Excavator Operator [11.43 h]; Crane Operator [11.43 h]; Equipment Operator [11.43 h]; Labour [97.31 h]; UPVC Pipes 200 MM [34.3] | 11,397.96 |  | RD28 |
| RSZone 1Road 28Sewage NetworkA33350 |  | Zone 1 - Road 28 - Sewage Network - UPVC Pipes 200 MM - Test | 1.64d | 2026-11-11 | 2026-11-12 | RSZone 1Road 28Sewage NetworkA33350-old, RSZone 1Road 28Sewage NetworkA33340 |  |  |  | 99.98d | 0d | Contract Price Original Scope [5025.43 SAR]; Pump Operator [16.38 h]; Equipment Operator [16.38 h]; Labour [42.9 h]; UPVC Pipes 200 MM [98.3] | 5,025.43 |  | RD28 |
| RSZone 1Road 28Sewage NetworkA33360 |  | Zone 1 - Road 28 - Sewage Network - UPVC Pipes 200 MM - Backfilling | 1.64d | 2026-11-12 | 2026-11-15 | RSZone 1Road 28Sewage NetworkA33360-old, RSZone 1Road 28Sewage NetworkA33350 |  |  |  | 99.98d | 99.38d | Contract Price Original Scope [5025.43 SAR]; Excavator Operator [16.38 h]; Compactor Operator [16.38 h]; Dump Truck Operator [16.38 h]; Water Truck Operator [16.38 h]; Labour [42.9 h]; UPVC Pipes 200 MM [98.3] | 5,025.43 |  | RD28 |

| ID | WBS | Activity | Duration | Start | Finish | Predecessors | Complete | Planned start | Planned finish | Total float | Free float | Resources | Cost | Actual cost | MODON |
| --- | --- | --- | --- | --- | --- | --- | --- | --- | --- | --- | --- | --- | --- | --- | --- |
|  | 10 | **Manhole** |  | 2025-08-28 | 2026-11-16 |  |  |  |  |  |  |  |  |  |  |
| RSZone 1Road 28Sewage NetworkA33930 |  | Zone 1 - Road 28 - Sewage Network - Manhole - Excavation | 5d | 2025-08-28 A | 2025-09-02 A | RSZone 1Road 27Sewage NetworkA33890 | 100% | 2025-08-28 | 2025-09-03 |  |  | Contract Price Original Scope [22803.4 SAR]; Excavator Operator [30 h]; Dump Truck Operator [30 h]; Labour [194.68 h]; Manholes (all depths, GRP) [12] | 22,803.39 | 22,803.39 | RD28 |
| RSZone 1Road 28Sewage NetworkA33940 |  | Zone 1 - Road 28 - Sewage Network - Manhole - FOOTING | 4d | 2025-09-03 A | 2025-09-07 A | RSZone 1Road 28Sewage NetworkA33930, RSZone 1Road 28Sewage NetworkA33930 FF | 100% |  |  |  |  | Contract Price Original Scope [136820 SAR]; Labour [1168.1 h]; Manholes (all depths, GRP) [12] | 136,820.36 | 136,820.36 | RD28 |
| RSZone 1Road 28Sewage NetworkA33950 |  | Zone 1 - Road 28 - Sewage Network - Manhole - MH INSTALLATION | 3d | 2025-09-08 A | 2025-09-10 A | RSZone 1Road 28Sewage NetworkA33940, RSZone 1Road 28Sewage NetworkA33940 FF | 100% |  |  |  |  | Contract Price Original Scope [159624 SAR]; Labour [1362.79 h]; Manholes (all depths, GRP) [12] | 159,623.75 | 159,623.75 | RD28 |
| RSZone 1Road 28Sewage NetworkA33960 |  | Zone 1 - Road 28 - Sewage Network - Manhole - COVER INSTALLATION | 3d | 2026-11-09 | 2026-11-11 | RSZone 1Road 28Sewage NetworkA33950 |  |  |  | 98.4d | 0d | Contract Price Original Scope [163424 SAR]; Labour [1395.23 h]; Manholes (all depths, GRP) [43] | 163,424.31 |  | RD28 |
| RSZone 1Road 28Sewage NetworkA33970 |  | Zone 1 - Road 28 - Sewage Network - Manhole - TEST | 2d | 2026-11-12 | 2026-11-14 | RSZone 1Road 28Sewage NetworkA33960 |  |  |  | 98.4d | 0d | Contract Price Original Scope [45606.8 SAR]; Pump Operator [20 h]; Equipment Operator [20 h]; Labour [389.37 h]; Manholes (all depths, GRP) [12] | 45,606.79 |  | RD28 |
| RSZone 1Road 28Sewage NetworkA33980 |  | Zone 1 - Road 28 - Sewage Network - Manhole - BACKFILLING | 2d | 2026-11-15 | 2026-11-16 | RSZone 1Road 28Sewage NetworkA33970 |  |  |  | 98.4d | 97.8d | Contract Price Original Scope [45606.8 SAR]; Excavator Operator [20 h]; Compactor Operator [20 h]; Dump Truck Operator [20 h]; Water Truck Operator [20 h]; Labour [389.37 h]; Manholes (all depths, GRP) [12] | 45,606.79 |  | RD28 |
|  | 7 | **Potable Network** |  | 2025-11-09 | 2026-11-22 |  |  |  |  |  |  |  |  |  |  |
|  | 1 | **Potable Pipes 200 MM** |  | 2026-06-04 | 2026-11-12 |  |  |  |  |  |  |  |  |  |  |
| RSZone 1Road 28Potable NetworkA54100-old |  | Zone 1 - Road 28 - Potable Network - Potable Pipes 200 MM - Excavation (old) | 128d | 2026-06-04 A | 2026-11-01 A | RSZone 1Road 27Potable NetworkA57720 | 100% | 2026-06-04 | 2026-11-02 |  |  | Contract Price Original Scope [1471.14 SAR]; Excavator Operator [29.85 h]; Dump Truck Operator [29.85 h]; Labour [12.56 h]; Potable Pipes 200 MM [58.7] | 1,471.14 | 1,471.14 | RD28 |
| RSZone 1Road 28Potable NetworkA54110-old |  | Zone 1 - Road 28 - Potable Network - Potable Pipes 200 MM - Installation (old) | 125d | 2026-06-08 A | 2026-11-01 A | RSZone 1Road 28Potable NetworkA54100-old | 100% |  |  |  |  | Contract Price Original Scope [10298 SAR]; Labour [87.92 h]; Potable Pipes 200 MM [58.7] | 10,297.97 | 10,297.97 | RD28 |
| RSZone 1Road 28Potable NetworkA54120-old |  | Zone 1 - Road 28 - Potable Network - Potable Pipes 200 MM - Test (old) | 124d | 2026-06-09 A | 2026-11-01 A | RSZone 1Road 28Potable NetworkA54110-old | 100% |  |  |  |  | Contract Price Original Scope [1471.14 SAR]; Pump Operator [19.9 h]; Equipment Operator [19.9 h]; Labour [12.56 h]; Potable Pipes 200 MM [58.7] | 1,471.14 | 1,471.14 | RD28 |
| RSZone 1Road 28Potable NetworkA54130-old |  | Zone 1 - Road 28 - Potable Network - Potable Pipes 200 MM - Backfilling (old) | 122d | 2026-06-11 A | 2026-11-01 A | RSZone 1Road 28Potable NetworkA54120-old | 100% | 2026-06-11 | 2026-11-02 |  |  | Contract Price Original Scope [1471.14 SAR]; Excavator Operator [19.9 h]; Compactor Operator [19.9 h]; Dump Truck Operator [19.9 h]; Water Truck Operator [19.9 h]; Labour [12.56 h]; Potable Pipes 200 MM [58.7] | 1,471.14 | 1,471.14 | RD28 |
| RSZone 1Road 28Potable NetworkA54100 |  | Zone 1 - Road 28 - Potable Network - Potable Pipes 200 MM - Excavation | 1d | 2026-11-09 | 2026-11-09 | RSZone 1Road 28Potable NetworkA54100-old |  |  |  | 97.4d | 0d | Contract Price Original Scope [7.39 SAR]; Excavator Operator [0.15 h]; Dump Truck Operator [0.15 h]; Labour [0.06 h]; Potable Pipes 200 MM [0.3] | 7.39 |  | RD28 |
| RSZone 1Road 28Potable NetworkA54110 |  | Zone 1 - Road 28 - Potable Network - Potable Pipes 200 MM - Installation | 1d | 2026-11-10 | 2026-11-10 | RSZone 1Road 28Potable NetworkA54110-old, RSZone 1Road 28Potable NetworkA54100 |  |  |  | 97.4d | 0d | Contract Price Original Scope [51.75 SAR]; Labour [0.44 h]; Potable Pipes 200 MM [0.3] | 51.75 |  | RD28 |
| RSZone 1Road 28Potable NetworkA54120 |  | Zone 1 - Road 28 - Potable Network - Potable Pipes 200 MM - Test | 1d | 2026-11-11 | 2026-11-11 | RSZone 1Road 28Potable NetworkA54120-old, RSZone 1Road 28Potable NetworkA54110 |  |  |  | 97.4d | 0d | Contract Price Original Scope [7.39 SAR]; Pump Operator [0.1 h]; Equipment Operator [0.1 h]; Labour [0.06 h]; Potable Pipes 200 MM [0.3] | 7.39 |  | RD28 |
| RSZone 1Road 28Potable NetworkA54130 |  | Zone 1 - Road 28 - Potable Network - Potable Pipes 200 MM - Backfilling | 1d | 2026-11-12 | 2026-11-12 | RSZone 1Road 28Potable NetworkA54130-old, RSZone 1Road 28Potable NetworkA54120 |  |  |  | 97.4d | 97.2d | Contract Price Original Scope [7.39 SAR]; Excavator Operator [0.1 h]; Compactor Operator [0.1 h]; Dump Truck Operator [0.1 h]; Water Truck Operator [0.1 h]; Labour [0.06 h]; Potable Pipes 200 MM [0.3] | 7.39 |  | RD28 |
|  | 6 | **Fittings** |  | 2025-11-09 | 2025-11-13 |  |  |  |  |  |  |  |  |  |  |
|  | 2 | **Elbows** |  | 2025-11-09 | 2025-11-11 |  |  |  |  |  |  |  |  |  |  |
| RSZone 1Road 28Potable NetworkA55540 |  | Zone 1 - Road 28 - Potable Network - Elbows - Installation | 3d | 2025-11-09 A | 2025-11-11 A | RSZone 1Road 27Potable NetworkA57740 | 100% |  |  |  |  | Contract Price Original Scope [1876.24 SAR]; Labour [16.02 h]; Fittings - Elbows (all sizes) [1] | 1,876.24 | 1,876.24 | RD28 |
|  | 5 | **End Cap** |  | 2025-11-11 | 2025-11-13 |  |  |  |  |  |  |  |  |  |  |
| RSZone 1Road 28Potable NetworkA55560 |  | Zone 1 - Road 28 - Potable Network - End Cap - Installation | 2.9d | 2025-11-11 A | 2025-11-13 A | RSZone 1Road 28Potable NetworkA55540 | 100% |  |  |  |  | Contract Price Original Scope [1461.95 SAR]; Labour [12.48 h]; Fittings - End Caps (all sizes) [2] | 1,461.95 | 1,461.95 | RD28 |
|  | 4 | **Buried Valves** |  | 2026-06-21 | 2026-11-18 |  |  |  |  |  |  |  |  |  |  |
| RSZone 1Road 28Potable NetworkA56120-old |  | Zone 1 - Road 28 - Potable Network - Buried Valves - Excavation (old) | 114d | 2026-06-21 A | 2026-11-01 A | RSZone 1Road 28Potable NetworkA55560 | 100% |  |  |  |  | Contract Price Original Scope [1601.9 SAR]; Excavator Operator [25 h]; Dump Truck Operator [25 h]; Labour [13.68 h]; Buried Valves [10] | 1,601.9 | 1,601.9 | RD28 |
| RSZone 1Road 28Potable NetworkA56130-old |  | Zone 1 - Road 28 - Potable Network - Buried Valves - Installation (old) | 113d | 2026-06-22 A | 2026-11-01 A | RSZone 1Road 28Potable NetworkA56120-old | 100% |  |  |  |  | Contract Price Original Scope [20824.7 SAR]; Labour [177.79 h]; Buried Valves [10] | 20,824.67 | 20,824.67 | RD28 |
| RSZone 1Road 28Potable NetworkA56150-old |  | Zone 1 - Road 28 - Potable Network - Buried Valves - Test (old) | 111d | 2026-06-24 A | 2026-11-01 A | RSZone 1Road 28Potable NetworkA56130-old | 100% |  |  |  |  | Contract Price Original Scope [2563.04 SAR]; Pump Operator [6.67 h]; Equipment Operator [6.67 h]; Labour [21.88 h]; Buried Valves [4] | 2,563.04 | 2,563.04 | RD28 |
| RSZone 1Road 28Potable NetworkA56120 |  | Zone 1 - Road 28 - Potable Network - Buried Valves - Excavation | 1d | 2026-11-09 | 2026-11-09 | RSZone 1Road 28Potable NetworkA56120-old |  |  |  | 90.3d | 0d | Contract Price Original Scope [320.38 SAR]; Excavator Operator [5 h]; Dump Truck Operator [5 h]; Labour [2.74 h]; Buried Valves [2] | 320.38 |  | RD28 |
| RSZone 1Road 28Potable NetworkA56130 |  | Zone 1 - Road 28 - Potable Network - Buried Valves - Installation | 1d | 2026-11-10 | 2026-11-10 | RSZone 1Road 28Potable NetworkA56130-old, RSZone 1Road 28Potable NetworkA56120 |  |  |  | 93.07d | 0d | Contract Price Original Scope [4164.93 SAR]; Labour [35.56 h]; Buried Valves [2] | 4,164.93 |  | RD28 |
| RSZone 1Road 28Potable NetworkA56150 |  | Zone 1 - Road 28 - Potable Network - Buried Valves - Test | 1.33d | 2026-11-11 | 2026-11-12 | RSZone 1Road 28Potable NetworkA56150-old, RSZone 1Road 28Potable NetworkA56130 |  |  |  | 93.07d | 0d | Contract Price Original Scope [5126.07 SAR]; Pump Operator [13.33 h]; Equipment Operator [13.33 h]; Labour [43.76 h]; Buried Valves [8] | 5,126.07 |  | RD28 |
| RSZone 1Road 28Potable NetworkA56140 |  | Zone 1 - Road 28 - Potable Network - Buried Valves - Surface Box | 3d | 2026-11-12 | 2026-11-16 | RSZone 1Road 28Potable NetworkA56150, RSZone 1Road 28Potable NetworkA56120, RSZone 1Road 28Potable NetworkA56130 |  |  |  | 93.07d | 0d | Labour; Buried Valves [12] |  |  | RD28 |
| RSZone 1Road 28Potable NetworkA56160 |  | Zone 1 - Road 28 - Potable Network - Buried Valves - Backfilling | 2d | 2026-11-16 | 2026-11-18 | RSZone 1Road 28Potable NetworkA56140 |  |  |  | 93.07d | 92.87d | Contract Price Original Scope [3844.55 SAR]; Excavator Operator [20 h]; Compactor Operator [20 h]; Dump Truck Operator [20 h]; Water Truck Operator [20 h]; Labour [32.82 h]; Buried Valves [12] | 3,844.55 |  | RD28 |

| ID | WBS | Activity | Duration | Start | Finish | Predecessors | Complete | Planned start | Planned finish | Total float | Free float | Resources | Cost | Actual cost | MODON |
| --- | --- | --- | --- | --- | --- | --- | --- | --- | --- | --- | --- | --- | --- | --- | --- |
|  | 2 | **Thurst Blocks** |  | 2025-11-17 | 2025-11-19 |  |  |  |  |  |  |  |  |  |  |
| RSZone 1Road 28Potable NetworkA55720 |  | Zone 1 - Road 28 - Potable Network - Thurst Blocks - Thrust Block | 3d | 2025-11-17 A | 2025-11-19 A | RSZone 1Road 28Potable NetworkA55560 | 100% |  |  |  |  | Contract Price Original Scope [13493.4 SAR]; Crane Operator [24 h]; Pump Operator [24 h]; Equipment Operator [24 h]; Labour [115.2 h]; Thrust Blocks [4] | 13,493.36 | 13,493.36 | RD28 |
|  | 3 | **Sand Bedding** |  | 2025-11-20 | 2025-11-21 |  |  |  |  |  |  |  |  |  |  |
| RSZone 1Road 28Potable NetworkA55780 |  | Zone 1 - Road 28 - Potable Network - Sand Bedding - Bedding | 0.9d | 2025-11-20 A | 2025-11-21 A | RSZone 1Road 28Potable NetworkA55720 | 100% | 2025-11-20 | 2025-11-20 |  |  | Contract Price Original Scope [1096.5 SAR]; Compactor Operator [20 h]; Equipment Operator [20 h]; Water Truck Operator [20 h]; Labour [9.36 h]; Sand Bedding [59] | 1,096.5 | 1,096.5 | RD28 |
|  | 7 | **FIRE HYDRANT** |  | 2026-07-06 | 2026-11-22 |  |  |  |  |  |  |  |  |  |  |
| RSZone 1Road 28Potable NetworkA57780-old |  | Zone 1 - Road 28 - Potable Network - FIRE HYDRANT - Excavation (old) | 101d | 2026-07-06 A | 2026-11-01 A | RSZone 1Road 28Potable NetworkA56120-old | 100% |  |  |  |  | Contract Price Original Scope [6936.41 SAR]; Excavator Operator [25 h]; Dump Truck Operator [25 h]; Labour [59.22 h]; Fire Hydrant [5] | 6,936.41 | 6,936.41 | RD28 |
| RSZone 1Road 28Potable NetworkA57790-old |  | Zone 1 - Road 28 - Potable Network - FIRE HYDRANT - Buried Gate Valve Installation (old) | 99d | 2026-07-08 A | 2026-11-01 A | RSZone 1Road 28Potable NetworkA57780-old | 100% |  |  |  |  | Labour; Fire Hydrant [5] |  |  | RD28 |
| RSZone 1Road 28Potable NetworkA57800-old |  | Zone 1 - Road 28 - Potable Network - FIRE HYDRANT - Fire Hydrant Installation (old) | 98d | 2026-07-09 A | 2026-11-01 A | RSZone 1Road 28Potable NetworkA57790-old | 100% | 2026-07-09 | 2026-11-02 |  |  | Contract Price Original Scope [50635.8 SAR]; Labour [432.3 h]; Fire Hydrant [5] | 50,635.79 | 50,635.79 | RD28 |
| RSZone 1Road 28Potable NetworkA57780 |  | Zone 1 - Road 28 - Potable Network - FIRE HYDRANT - Excavation | 1d | 2026-11-10 | 2026-11-10 | RSZone 1Road 28Potable NetworkA57780-old, RSZone 1Road 28Potable NetworkA56120 |  |  |  | 90.3d | 0d | Contract Price Original Scope [1387.28 SAR]; Excavator Operator [5 h]; Dump Truck Operator [5 h]; Labour [11.84 h]; Fire Hydrant [1] | 1,387.28 |  | RD28 |
| RSZone 1Road 28Potable NetworkA57790 |  | Zone 1 - Road 28 - Potable Network - FIRE HYDRANT - Buried Gate Valve Installation | 1.1d | 2026-11-11 | 2026-11-12 | RSZone 1Road 28Potable NetworkA57790-old, RSZone 1Road 28Potable NetworkA57780 |  |  |  | 90.3d | 0d | Labour; Fire Hydrant [1] |  |  | RD28 |
| RSZone 1Road 28Potable NetworkA57800 |  | Zone 1 - Road 28 - Potable Network - FIRE HYDRANT - Fire Hydrant Installation | 1d | 2026-11-12 | 2026-11-14 | RSZone 1Road 28Potable NetworkA57800-old, RSZone 1Road 28Potable NetworkA57790 |  |  |  | 90.3d | 0d | Contract Price Original Scope [10127.2 SAR]; Labour [86.46 h]; Fire Hydrant [1] | 10,127.16 |  | RD28 |
| RSZone 1Road 28Potable NetworkA57810 |  | Zone 1 - Road 28 - Potable Network - FIRE HYDRANT - Surface Box | 3d | 2026-11-14 | 2026-11-17 | RSZone 1Road 28Potable NetworkA57800, RSZone 1Road 28Potable NetworkA57790 |  |  |  | 90.3d | 0d | Labour; Fire Hydrant [6] |  |  | RD28 |
| RSZone 1Road 28Potable NetworkA57820 |  | Zone 1 - Road 28 - Potable Network - FIRE HYDRANT - Test | 2d | 2026-11-17 | 2026-11-19 | RSZone 1Road 28Potable NetworkA57810 |  |  |  | 90.3d | 0d | Contract Price Original Scope [5826.58 SAR]; Pump Operator [20 h]; Equipment Operator [20 h]; Labour [49.74 h]; Fire Hydrant [6] | 5,826.58 |  | RD28 |
| RSZone 1Road 28Potable NetworkA57830 |  | Zone 1 - Road 28 - Potable Network - FIRE HYDRANT - Backfilling | 2d | 2026-11-19 | 2026-11-22 | RSZone 1Road 28Potable NetworkA57820 |  |  |  | 90.3d | 90.1d | Contract Price Original Scope [8323.69 SAR]; Excavator Operator [20 h]; Compactor Operator [20 h]; Dump Truck Operator [20 h]; Water Truck Operator [20 h]; Labour [71.06 h]; Fire Hydrant [6] | 8,323.69 |  | RD28 |
|  | 5 | **Lateral Irrigation Network** |  | 2025-06-30 | 2026-11-18 |  |  |  |  |  |  |  |  |  |  |
|  | 6 | **HDPE Pipes** |  | 2025-06-30 | 2026-11-12 |  |  |  |  |  |  |  |  |  |  |
|  | 2 | **HDPE Pipes 125 MM** |  | 2025-06-30 | 2026-11-12 |  |  |  |  |  |  |  |  |  |  |
| RSZone 1Road 28Irrigation NetworkA23390 |  | Zone 1 - Road 28 - Lateral Irrigation Network - HDPE Pipes 125 MM - Excavation | 3d | 2025-06-30 A | 2025-07-02 A | RSZone 1Road 27Irrigation NetworkA90200 | 100% |  |  |  |  | Contract Price Original Scope [832.88 SAR]; Excavator Operator [30 h]; Dump Truck Operator [30 h]; Labour [7.11 h]; HDPE Pipes 125 MM [60] | 832.88 | 832.88 | RD28 |
| RSZone 1Road 28Irrigation NetworkA23400 |  | Zone 1 - Road 28 - Lateral Irrigation Network - HDPE Pipes 125 MM - Pipe Installation | 6d | 2025-07-03 A | 2025-07-09 A | RSZone 1Road 28Irrigation NetworkA23390, RSZone 1Road 28Irrigation NetworkA23390 FF | 100% | 2025-07-03 | 2025-07-10 |  |  | Contract Price Original Scope [5830.18 SAR]; Excavator Operator [40 h]; Crane Operator [40 h]; Equipment Operator [40 h]; Labour [49.78 h]; HDPE Pipes 125 MM [60] | 5,830.18 | 5,830.18 | RD28 |
| RSZone 1Road 28Irrigation NetworkA23410 |  | Zone 1 - Road 28 - Lateral Irrigation Network - HDPE Pipes 125 MM - Test | 2d | 2026-11-09 | 2026-11-10 | RSZone 1Road 28Irrigation NetworkA23400 |  |  |  | 97.4d | 0d | Contract Price Original Scope [832.88 SAR]; Pump Operator [20 h]; Equipment Operator [20 h]; Labour [7.11 h]; HDPE Pipes 125 MM [60] | 832.88 |  | RD28 |
| RSZone 1Road 28Irrigation NetworkA23420 |  | Zone 1 - Road 28 - Lateral Irrigation Network - HDPE Pipes 125 MM - Backfilling | 2d | 2026-11-11 | 2026-11-12 | RSZone 1Road 28Irrigation NetworkA23410 |  |  |  | 97.4d | 96.76d | Contract Price Original Scope [832.88 SAR]; Excavator Operator [20 h]; Compactor Operator [20 h]; Dump Truck Operator [20 h]; Water Truck Operator [20 h]; Labour [7.11 h]; HDPE Pipes 125 MM [60] | 832.88 |  | RD28 |
|  | 1 | **HDPE Fitting** |  | 2025-07-02 | 2025-07-06 |  |  |  |  |  |  |  |  |  |  |
|  | 1 | **Elbows** |  | 2025-07-02 | 2025-07-03 |  |  |  |  |  |  |  |  |  |  |
|  | 1 | **Elbows for Pipe 125 MM** |  | 2025-07-02 | 2025-07-03 |  |  |  |  |  |  |  |  |  |  |
| RSZone 1Road 28Irrigation NetworkA23560 |  | Zone 1 - Road 28 - Lateral Irrigation Network - Elbows for Pipe 125 MM - Installation | 1.9d | 2025-07-02 A | 2025-07-03 A | RSZone 1Road 28Irrigation NetworkA23400 | 100% |  |  |  |  | Contract Price Original Scope [1299.46 SAR]; Labour [11.09 h]; Fittings - Elbows (all sizes) [1] | 1,299.46 | 1,299.46 | RD28 |

| ID | WBS | Activity | Duration | Start | Finish | Predecessors | Complete | Planned start | Planned finish | Total float | Free float | Resources | Cost | Actual cost | MODON |
| --- | --- | --- | --- | --- | --- | --- | --- | --- | --- | --- | --- | --- | --- | --- | --- |
|  | 2 | **Tees** |  | 2025-07-03 | 2025-07-06 |  |  |  |  |  |  |  |  |  |  |
|  | 1 | **Tees for Pipe 125 MM** |  | 2025-07-03 | 2025-07-06 |  |  |  |  |  |  |  |  |  |  |
| RSZone 1Road 28Irrigation NetworkA23660 |  | Zone 1 - Road 28 - Lateral Irrigation Network - Tees for Pipe 125 MM - Installation | 3d | 2025-07-03 A | 2025-07-06 A | RSZone 1Road 28Irrigation NetworkA23560 | 100% | 2025-07-03 | 2025-07-07 |  |  | Contract Price Original Scope [1536.06 SAR]; Labour [13.11 h]; Fittings - Tees (all sizes) [1] | 1,536.06 | 1,536.06 | RD28 |
|  | 11 | **Valves** |  | 2026-05-10 | 2026-11-18 |  |  |  |  |  |  |  |  |  |  |
|  | 1 | **Buried Valves** |  | 2026-05-10 | 2026-11-18 |  |  |  |  |  |  |  |  |  |  |
| RSZone 1Road 28Irrigation NetworkA23260- |  | Zone 1 - Road 28 - Lateral Irrigation Network - Buried Valves - Excavation (old) | 150d | 2026-05-10 A | 2026-11-01 A | RSZone 1Road 28Irrigation NetworkA23660 | 100% |  |  |  |  | Contract Price Original Scope [605.31 SAR]; Excavator Operator [27 h]; Dump Truck Operator [27 h]; Labour [5.17 h]; Buried Valves [9] | 605.31 | 605.31 | RD28 |
| RSZone 1Road 28Irrigation NetworkA23840- |  | Zone 1 - Road 28 - Lateral Irrigation Network - Buried Valves - Installation (old) | 148d | 2026-05-12 A | 2026-11-01 A | RSZone 1Road 28Irrigation NetworkA23260- | 100% |  |  |  |  | Contract Price Original Scope [7869.03 SAR]; Labour [67.18 h]; Buried Valves [9] | 7,869.03 | 7,869.03 | RD28 |
| RSZone 1Road 28Irrigation NetworkA23260- |  | Zone 1 - Road 28 - Lateral Irrigation Network - Buried Valves - Excavation (old) | 1d | 2026-11-09 | 2026-11-09 | RSZone 1Road 28Irrigation NetworkA23260- |  |  |  | 92.4d | 0d | Contract Price Original Scope [67.26 SAR]; Excavator Operator [3 h]; Dump Truck Operator [3 h]; Labour [0.57 h]; Buried Valves [1] | 67.26 |  | RD28 |
| RSZone 1Road 28Irrigation NetworkA23840- |  | Zone 1 - Road 28 - Lateral Irrigation Network - Buried Valves - Installation (old) | 1d | 2026-11-10 | 2026-11-10 | RSZone 1Road 28Irrigation NetworkA23840-, RSZone 1Road 28Irrigation NetworkA23260- |  |  |  | 92.4d | 0d | Contract Price Original Scope [874.34 SAR]; Labour [7.46 h]; Buried Valves [1] | 874.34 |  | RD28 |
| RSZone 1Road 28Irrigation NetworkA23850 |  | Zone 1 - Road 28 - Lateral Irrigation Network - Buried Valves - Surface Box | 3d | 2026-11-11 | 2026-11-14 | RSZone 1Road 28Irrigation NetworkA23840-, RSZone 1Road 28Irrigation NetworkA23260- |  |  |  | 92.4d | 0d | Labour; Buried Valves [10] |  |  | RD28 |
| RSZone 1Road 28Irrigation NetworkA23860 |  | Zone 1 - Road 28 - Lateral Irrigation Network - Buried Valves - Test | 2d | 2026-11-15 | 2026-11-16 | RSZone 1Road 28Irrigation NetworkA23850 |  |  |  | 92.4d | 0d | Contract Price Original Scope [2690.26 SAR]; Pump Operator [20 h]; Equipment Operator [20 h]; Labour [22.97 h]; Buried Valves [10] | 2,690.26 |  | RD28 |
| RSZone 1Road 28Irrigation NetworkA23870 |  | Zone 1 - Road 28 - Lateral Irrigation Network - Buried Valves - Backfilling | 2d | 2026-11-17 | 2026-11-18 | RSZone 1Road 28Irrigation NetworkA23860 |  |  |  | 92.4d | 91.76d | Contract Price Original Scope [1345.13 SAR]; Excavator Operator [20 h]; Compactor Operator [20 h]; Dump Truck Operator [20 h]; Water Truck Operator [20 h]; Labour [11.48 h]; Buried Valves [10] | 1,345.13 |  | RD28 |
|  | 3 | **Bedding** |  | 2025-07-06 | 2025-07-07 |  |  |  |  |  |  |  |  |  |  |
| RSZone 1Road 28Irrigation NetworkA24400 |  | Zone 1 - Road 28 - Lateral Irrigation Network - Bedding - Bedding | 2d | 2025-07-06 A | 2025-07-07 A | RSZone 1Road 28Irrigation NetworkA23660 | 100% |  |  |  |  | Contract Price Original Scope [1545.18 SAR]; Compactor Operator [20 h]; Equipment Operator [20 h]; Water Truck Operator [20 h]; Labour [13.19 h]; Bedding [60] | 1,545.18 | 1,545.18 | RD28 |
|  | 4 | **Thrust Block** |  | 2025-07-06 | 2025-07-07 |  |  |  |  |  |  |  |  |  |  |
| RSZone 1Road 28Irrigation NetworkA24410 |  | Zone 1 - Road 28 - Lateral Irrigation Network - Thrust Block - Thrust Block | 2d | 2025-07-06 A | 2025-07-07 A | RSZone 1Road 28Irrigation NetworkA24400 | 100% |  |  |  |  | Contract Price Original Scope [2043.52 SAR]; Crane Operator [12 h]; Pump Operator [12 h]; Equipment Operator [12 h]; Labour [17.45 h]; Thrust Blocks [2] | 2,043.52 | 2,043.52 | RD28 |
|  | 12 | **Telecom Network** |  | 2026-07-12 | 2026-11-30 |  |  |  |  |  |  |  |  |  |  |
|  | 1 | **Telecom Pipe** |  | 2026-07-12 | 2026-11-29 |  |  |  |  |  |  |  |  |  |  |
| RSZone 1Road 28Telecom NetworkA60960-old |  | Zone 1 - Road 28 - Telecom Network - Telecom Pipe - Excavation (old) | 96d | 2026-07-12 A | 2026-11-01 A | RSZone 1Road 27Telecom NetworkA65320-old | 100% |  |  |  |  | Contract Price Original Scope [950.71 SAR]; Excavator Operator [2.88 h]; Dump Truck Operator [2.88 h]; Labour [8.12 h]; Telecom Pipe [44.11] | 950.71 | 950.71 | RD28 |
| RSZone 1Road 28Telecom NetworkA60970-old |  | Zone 1 - Road 28 - Telecom Network - Telecom Pipe - Concrete Pouring (old) | 95d | 2026-07-13 A | 2026-11-01 A | RSZone 1Road 28Telecom NetworkA60960-old | 100% |  |  |  |  | Contract Price Original Scope [6657.91 SAR]; Crane Operator [1.25 h]; Pump Operator [1.25 h]; Equipment Operator [1.25 h]; Labour [56.84 h]; Telecom Pipe [44.13] | 6,657.91 | 6,657.91 | RD28 |
| RSZone 1Road 28Telecom NetworkA60960 |  | Zone 1 - Road 28 - Telecom Network - Telecom Pipe - Excavation | 2.71d | 2026-11-19 | 2026-11-23 | RSZone 1Road 28Telecom NetworkA60960-old, RSZone 1Road 27Telecom NetworkA65320 |  |  |  | 87.58d | 0d | Contract Price Original Scope [8941.05 SAR]; Excavator Operator [27.12 h]; Dump Truck Operator [27.12 h]; Labour [76.33 h]; Telecom Pipe [414.89] | 8,941.05 |  | RD28 |
| RSZone 1Road 28Telecom NetworkA60970 |  | Zone 1 - Road 28 - Telecom Network - Telecom Pipe - Concrete Pouring | 1.18d | 2026-11-23 | 2026-11-24 | RSZone 1Road 28Telecom NetworkA60970-old, RSZone 1Road 28Telecom NetworkA60960 |  |  |  | 87.58d | 0d | Contract Price Original Scope [62584.4 SAR]; Crane Operator [11.75 h]; Pump Operator [11.75 h]; Equipment Operator [11.75 h]; Labour [534.31 h]; Telecom Pipe [414.87] | 62,584.37 |  | RD28 |
| RSZone 1Road 28Telecom NetworkA60980 |  | Zone 1 - Road 28 - Telecom Network - Telecom Pipe - Test | 2d | 2026-11-24 | 2026-11-26 | RSZone 1Road 28Telecom NetworkA60970 |  |  |  | 88.58d | 0d | Contract Price Original Scope [9891.76 SAR]; Pump Operator [20 h]; Equipment Operator [20 h]; Labour [84.45 h]; Telecom Pipe [459] | 9,891.76 |  | RD28 |
| RSZone 1Road 28Telecom NetworkA60990 |  | Zone 1 - Road 28 - Telecom Network - Telecom Pipe - Backfilling | 2d | 2026-11-26 | 2026-11-29 | RSZone 1Road 28Telecom NetworkA60980, RSZone 1Road 28Telecom NetworkA60960 |  |  |  | 88.58d | 88.18d | Contract Price Original Scope [9891.76 SAR]; Excavator Operator [20 h]; Compactor Operator [20 h]; Dump Truck Operator [20 h]; Water Truck Operator [20 h]; Labour [84.45 h]; Telecom Pipe [459] | 9,891.76 |  | RD28 |

| ID | WBS | Activity | Duration | Start | Finish | Predecessors | Complete | Planned start | Planned finish | Total float | Free float | Resources | Cost | Actual cost | MODON |
| --- | --- | --- | --- | --- | --- | --- | --- | --- | --- | --- | --- | --- | --- | --- | --- |
|  | 12 | **Telecom Duct** |  | 2026-07-13 | 2026-11-30 |  |  |  |  |  |  |  |  |  |  |
| RSZone 1Road 28Telecom NetworkA65800-old |  | Zone 1 - Road 28 - Telecom Network - Telecom Duct - Excavation (old) | 95d | 2026-07-13 A | 2026-11-01 A | RSZone 1Road 28Telecom NetworkA60960-old | 100% |  |  |  |  | Contract Price Original Scope [1316.83 SAR]; Excavator Operator [29.75 h]; Dump Truck Operator [29.75 h]; Labour [11.24 h]; Telecom Duct (Road Crossing) [60.49] | 1,316.83 | 1,316.83 | RD28 |
| RSZone 1Road 28Telecom NetworkA65810-old |  | Zone 1 - Road 28 - Telecom Network - Telecom Duct - Concrete Pouring (old) | 94d | 2026-07-14 A | 2026-11-01 A | RSZone 1Road 28Telecom NetworkA65800-old, RSZone 1Road 28Telecom NetworkA60970-old | 100% |  |  |  |  | Contract Price Original Scope [18435.6 SAR]; Crane Operator [13.88 h]; Pump Operator [13.88 h]; Equipment Operator [13.88 h]; Labour [157.39 h]; Telecom Duct (Road Crossing) [60.49] | 18,435.57 | 18,435.57 | RD28 |
| RSZone 1Road 28Telecom NetworkA65800 |  | Zone 1 - Road 28 - Telecom Network - Telecom Duct - Excavation | 1d | 2026-11-04 A | 2026-11-08 A | RSZone 1Road 28Telecom NetworkA65800-old, RSZone 1Road 28Telecom NetworkA60960-old | 100% | 2026-11-16 | 2026-11-17 |  |  | Contract Price Original Scope [11.07 SAR]; Excavator Operator [0.25 h]; Dump Truck Operator [0.25 h]; Labour [0.09 h]; Telecom Duct (Road Crossing) [0.51] | 11.07 | 11.07 | RD28 |
| RSZone 1Road 28Telecom NetworkA65810 |  | Zone 1 - Road 28 - Telecom Network - Telecom Duct - Concrete Pouring | 1d | 2026-11-24 | 2026-11-25 | RSZone 1Road 28Telecom NetworkA65810-old, RSZone 1Road 28Telecom NetworkA65800, RSZone 1Road 28Telecom NetworkA60970, RSZone 1Road 28Telecom NetworkA60960 |  |  |  | 87.58d | 0d | Contract Price Original Scope [154.92 SAR]; Crane Operator [0.12 h]; Pump Operator [0.12 h]; Equipment Operator [0.12 h]; Labour [1.32 h]; Telecom Duct (Road Crossing) [0.51] | 154.92 |  | RD28 |
| RSZone 1Road 28Telecom NetworkA65820 |  | Zone 1 - Road 28 - Telecom Network - Telecom Duct - Test | 2d | 2026-11-25 | 2026-11-28 | RSZone 1Road 28Telecom NetworkA65810 |  |  |  | 87.58d | 0d | Contract Price Original Scope [2655.78 SAR]; Pump Operator [20 h]; Equipment Operator [20 h]; Labour [22.67 h]; Telecom Duct (Road Crossing) [61] | 2,655.78 |  | RD28 |
| RSZone 1Road 28Telecom NetworkA65830 |  | Zone 1 - Road 28 - Telecom Network - Telecom Duct - Backfilling | 2d | 2026-11-28 | 2026-11-30 | RSZone 1Road 28Telecom NetworkA65820, RSZone 1Road 28Telecom NetworkA65800 |  |  |  | 87.58d | 87.18d | Contract Price Original Scope [3983.68 SAR]; Excavator Operator [20 h]; Compactor Operator [20 h]; Dump Truck Operator [20 h]; Water Truck Operator [20 h]; Labour [34.01 h]; Telecom Duct (Road Crossing) [61] | 3,983.68 |  | RD28 |
|  | 2 | **TELECOM MANHOLE** |  | 2026-07-19 | 2026-11-15 |  |  |  |  |  |  |  |  |  |  |
| RSZone 1Road 28Telecom NetworkA68480-old |  | Zone 1 - Road 28 - Telecom Network - TELECOM MANHOLE - Manhole Installation (old) | 90d | 2026-07-19 A | 2026-11-01 A | RSZone 1Road 27Telecom NetworkA68360-old | 100% |  |  |  |  | Contract Price Original Scope [57030.7 SAR]; Crane Operator [13.3 h]; Boom Truck Operator [13.3 h]; Equipment Operator [13.3 h]; Labour [486.9 h]; Telecom Manhole [3.8] | 57,030.67 | 57,030.67 | RD28 |
| RSZone 1Road 28Telecom NetworkA68480 |  | Zone 1 - Road 28 - Telecom Network - TELECOM MANHOLE - Manhole Installation | 1d | 2026-11-15 | 2026-11-15 | RSZone 1Road 28Telecom NetworkA68480-old, RSZone 1Road 27Telecom NetworkA68360 |  |  |  | 76.4d | 0d | Contract Price Original Scope [3001.61 SAR]; Crane Operator [0.7 h]; Boom Truck Operator [0.7 h]; Equipment Operator [0.7 h]; Labour [25.63 h]; Telecom Manhole [0.2] | 3,001.61 |  | RD28 |
|  | 15 | **Road 29** |  | 2025-07-08 | 2027-03-02 |  |  |  |  |  |  |  |  |  |  |
|  | 9 | **Storm Network** |  | 2025-09-10 | 2027-03-02 |  |  |  |  |  |  |  |  |  |  |
|  | 1 | **Collection Pipes 150 MM** |  | 2025-09-10 | 2026-11-12 |  |  |  |  |  |  |  |  |  |  |
| RSZone 1Road 29Storm NetworkA36740 |  | Zone 1 - Road 29 - Storm Network - Collection Pipes 150 MM - Excavation | 4d | 2025-09-10 A | 2025-09-14 A | RSZone 1Road 28Storm NetworkA52400 | 100% |  |  |  |  | Contract Price Original Scope [1835.16 SAR]; Excavator Operator [30 h]; Dump Truck Operator [30 h]; Labour [15.67 h]; Collection Pipes 150 MM [384] | 1,835.16 | 1,835.16 | RD29 |
| RSZone 1Road 29Storm NetworkA36750 |  | Zone 1 - Road 29 - Storm Network - Collection Pipes 150 MM - Bedding | 3d | 2025-09-15 A | 2025-09-17 A | RSZone 1Road 29Storm NetworkA36740 | 100% |  |  |  |  | Contract Price Original Scope [917.58 SAR]; Compactor Operator [20 h]; Equipment Operator [20 h]; Water Truck Operator [20 h]; Labour [7.83 h]; Collection Pipes 150 MM [384] | 917.58 | 917.58 | RD29 |
| RSZone 1Road 29Storm NetworkA36760 |  | Zone 1 - Road 29 - Storm Network - Collection Pipes 150 MM - Pipe Installation | 5.9d | 2025-09-18 A | 2025-09-25 A | RSZone 1Road 29Storm NetworkA36750 | 100% |  |  |  |  | Contract Price Original Scope [11928.6 SAR]; Excavator Operator [40 h]; Crane Operator [40 h]; Equipment Operator [40 h]; Labour [101.84 h]; Collection Pipes 150 MM [384] | 11,928.56 | 11,928.56 | RD29 |
| RSZone 1Road 29Storm NetworkA36770 |  | Zone 1 - Road 29 - Storm Network - Collection Pipes 150 MM - Test | 2d | 2026-11-09 | 2026-11-10 | RSZone 1Road 29Storm NetworkA36760 |  |  |  | 121.4d | 0d | Contract Price Original Scope [1835.16 SAR]; Pump Operator [20 h]; Equipment Operator [20 h]; Labour [15.67 h]; Collection Pipes 150 MM [384] | 1,835.16 |  | RD29 |
| RSZone 1Road 29Storm NetworkA36780 |  | Zone 1 - Road 29 - Storm Network - Collection Pipes 150 MM - Backfilling | 2d | 2026-11-11 | 2026-11-12 | RSZone 1Road 29Storm NetworkA36770 |  |  |  | 121.4d | 107d | Contract Price Original Scope [1835.16 SAR]; Excavator Operator [20 h]; Compactor Operator [20 h]; Dump Truck Operator [20 h]; Water Truck Operator [20 h]; Labour [15.67 h]; Collection Pipes 150 MM [384] | 1,835.16 |  | RD29 |
|  | 2 | **Perforated 160 mm** |  | 2025-10-12 | 2026-11-10 |  |  |  |  |  |  |  |  |  |  |
| RSZone 1Road 29Storm NetworkA50490 |  | Zone 1 - Road 29 - Storm Network - Perforated 160 mm - Excavation | 4.9d | 2025-10-12 A | 2025-10-16 A | RSZone 1Road 29Storm NetworkA36760 | 100% |  |  |  |  | Contract Price Original Scope [19947 SAR]; Excavator Operator [30 h]; Dump Truck Operator [30 h]; Labour [170.3 h]; Perforated 160 mm [1248] | 19,946.99 | 19,946.99 | RD29 |
| RSZone 1Road 29Storm NetworkA50500 |  | Zone 1 - Road 29 - Storm Network - Perforated 160 mm - Bedding | 2d | 2025-10-19 A | 2025-10-20 A | RSZone 1Road 29Storm NetworkA50490 | 100% |  |  |  |  | Contract Price Original Scope [9973.49 SAR]; Compactor Operator [20 h]; Equipment Operator [20 h]; Water Truck Operator [20 h]; Labour [85.15 h]; Perforated 160 mm [1248] | 9,973.49 | 9,973.49 | RD29 |
| RSZone 1Road 29Storm NetworkA50510 |  | Zone 1 - Road 29 - Storm Network - Perforated 160 mm - Pipe Installation | 6d | 2025-10-20 A | 2025-10-26 A | RSZone 1Road 29Storm NetworkA50500 | 100% |  |  |  |  | Contract Price Original Scope [129655 SAR]; Excavator Operator [40 h]; Crane Operator [40 h]; Equipment Operator [40 h]; Labour [1106.93 h]; Perforated 160 mm [1248] | 129,655.42 | 129,655.42 | RD29 |
| RSZone 1Road 29Storm NetworkA50530 |  | Zone 1 - Road 29 - Storm Network - Perforated 160 mm - Backfilling | 3.9d | 2025-10-27 A | 2025-10-30 A | RSZone 1Road 29Storm NetworkA50510 | 100% |  |  |  |  | Contract Price Original Scope [19947 SAR]; Excavator Operator [20 h]; Compactor Operator [20 h]; Dump Truck Operator [20 h]; Water Truck Operator [20 h]; Labour [170.3 h]; Perforated 160 mm [1248] | 19,946.99 | 19,946.99 | RD29 |
| RSZone 1Road 29Storm NetworkA50520 |  | Zone 1 - Road 29 - Storm Network - Perforated 160 mm - Test | 2d | 2026-11-09 | 2026-11-10 | RSZone 1Road 29Storm NetworkA50530 |  |  |  | 123.4d | 109d | Contract Price Original Scope [19947 SAR]; Pump Operator [20 h]; Equipment Operator [20 h]; Labour [170.3 h]; Perforated 160 mm [1248] | 19,946.99 |  | RD29 |

| ID | WBS | Activity | Duration | Start | Finish | Predecessors | Complete | Planned start | Planned finish | Total float | Free float | Resources | Cost | Actual cost | MODON |
| --- | --- | --- | --- | --- | --- | --- | --- | --- | --- | --- | --- | --- | --- | --- | --- |
|  | 6 | **Box Culvert** |  | 2027-02-08 | 2027-03-02 |  |  |  |  |  |  |  |  |  |  |
| RSZone 1Road 29Storm NetworkA40290 |  | Zone 1 - Road 29 - Storm Network - Box Culvert - Excavation | 5d | 2027-02-08 | 2027-02-13 | RSZone 1Road 28Storm NetworkA39890 |  |  |  | 14.4d | 0d | Contract Price Original Scope [18962.6 SAR]; Excavator Operator [30 h]; Dump Truck Operator [30 h]; Labour [161.89 h]; Box Culvert (all sizes/depths) [44] | 18,962.59 |  | RD29 |
| RSZone 1Road 29Storm NetworkA40310 |  | Zone 1 - Road 29 - Storm Network - Box Culvert - SLAB INSTALLATIO | 3d | 2027-02-14 | 2027-02-16 | RSZone 1Road 29Storm NetworkA40290 |  |  |  | 32.4d | 0d | Contract Price Original Scope [37925.2 SAR]; Crane Operator [6 h]; Pump Operator [6 h]; Equipment Operator [6 h]; Labour [323.79 h]; Box Culvert (all sizes/depths) [44] | 37,925.18 |  | RD29 |
| RSZone 1Road 29Storm NetworkA40300 |  | Zone 1 - Road 29 - Storm Network - Box Culvert - Installation | 3d | 2027-02-17 | 2027-02-20 | RSZone 1Road 29Storm NetworkA40310 |  |  |  | 32.4d | 0d | Contract Price Original Scope [94812.9 SAR]; Crane Operator [6 h]; Equipment Operator [6 h]; Labour [809.46 h]; Box Culvert (all sizes/depths) [44] | 94,812.94 |  | RD29 |
| RSZone 1Road 29Storm NetworkA40320 |  | Zone 1 - Road 29 - Storm Network - Box Culvert - TEST | 2d | 2027-02-22 | 2027-02-25 | RSZone 1Road 29Storm NetworkA40300 |  |  |  | 32.4d | 0d | Contract Price Original Scope [18962.6 SAR]; Pump Operator [20 h]; Equipment Operator [20 h]; Labour [161.89 h]; Box Culvert (all sizes/depths) [44] | 18,962.59 |  | RD29 |
| RSZone 1Road 29Storm NetworkA40330 |  | Zone 1 - Road 29 - Storm Network - Box Culvert - BACKFILLING | 2d | 2027-02-27 | 2027-03-02 | RSZone 1Road 29Storm NetworkA40320 |  |  |  | 32.4d | 18d | Contract Price Original Scope [18962.6 SAR]; Excavator Operator [20 h]; Compactor Operator [20 h]; Dump Truck Operator [20 h]; Water Truck Operator [20 h]; Labour [161.89 h]; Box Culvert (all sizes/depths) [44] | 18,962.59 |  | RD29 |
|  | 8 | **Manhole** |  | 2025-09-16 | 2026-11-19 |  |  |  |  |  |  |  |  |  |  |
| RSZone 1Road 29Storm NetworkA41350 |  | Zone 1 - Road 29 - Storm Network - Manhole - Excavation | 5d | 2025-09-16 A | 2025-09-22 A | RSZone 1Road 29Storm NetworkA50530 | 100% | 2025-09-16 | 2025-09-21 |  |  | Contract Price Original Scope [1388.93 SAR]; Excavator Operator [30 h]; Dump Truck Operator [30 h]; Labour [11.86 h]; Manholes GRP (new + DI cover only) [1] | 1,388.93 | 1,388.93 | RD29 |
| RSZone 1Road 29Storm NetworkA41360 |  | Zone 1 - Road 29 - Storm Network - Manhole - FOOTING | 2.9d | 2025-09-23 A | 2025-09-25 A | RSZone 1Road 29Storm NetworkA41350 | 100% |  |  |  |  | Contract Price Original Scope [8333.56 SAR]; Crane Operator [7 h]; Pump Operator [7 h]; Equipment Operator [7 h]; Labour [71.15 h]; Manholes GRP (new + DI cover only) [1] | 8,333.56 | 8,333.56 | RD29 |
| RSZone 1Road 29Storm NetworkA41370 |  | Zone 1 - Road 29 - Storm Network - Manhole - MH INSTALLATION | 3d | 2025-09-28 A | 2025-09-30 A | RSZone 1Road 29Storm NetworkA41360 | 100% |  |  |  |  | Contract Price Original Scope [8333.56 SAR]; Crane Operator [7 h]; Boom Truck Operator [7 h]; Equipment Operator [7 h]; Labour [71.15 h]; Manholes GRP (new + DI cover only) [1] | 8,333.56 | 8,333.56 | RD29 |
| RSZone 1Road 29Storm NetworkA41380 |  | Zone 1 - Road 29 - Storm Network - Manhole - CONCRETE SLAB | 3d | 2026-11-09 | 2026-11-11 | RSZone 1Road 29Storm NetworkA41370 |  |  |  | 115.4d | 0d | Contract Price Original Scope [1388.93 SAR]; Crane Operator [7 h]; Pump Operator [7 h]; Equipment Operator [7 h]; Labour [11.86 h]; Manholes GRP (new + DI cover only) [1] | 1,388.93 |  | RD29 |
| RSZone 1Road 29Storm NetworkA41390 |  | Zone 1 - Road 29 - Storm Network - Manhole - COVER INSTALLATION | 3d | 2026-11-12 | 2026-11-15 | RSZone 1Road 29Storm NetworkA41380 |  |  |  | 115.4d | 0d | Contract Price Original Scope [2777.85 SAR]; Crane Operator [7 h]; Boom Truck Operator [7 h]; Equipment Operator [7 h]; Labour [23.72 h]; Manholes GRP (new + DI cover only) [1] | 2,777.85 |  | RD29 |
| RSZone 1Road 29Storm NetworkA41400 |  | Zone 1 - Road 29 - Storm Network - Manhole - TEST | 2d | 2026-11-16 | 2026-11-17 | RSZone 1Road 29Storm NetworkA41390 |  |  |  | 115.4d | 0d | Contract Price Original Scope [2777.85 SAR]; Pump Operator [20 h]; Equipment Operator [20 h]; Labour [23.72 h]; Manholes GRP (new + DI cover only) [1] | 2,777.85 |  | RD29 |
| RSZone 1Road 29Storm NetworkA41410 |  | Zone 1 - Road 29 - Storm Network - Manhole - BACKFILLING | 2d | 2026-11-18 | 2026-11-19 | RSZone 1Road 29Storm NetworkA41400 |  |  |  | 115.4d | 101d | Contract Price Original Scope [2777.85 SAR]; Excavator Operator [20 h]; Compactor Operator [20 h]; Dump Truck Operator [20 h]; Water Truck Operator [20 h]; Labour [23.72 h]; Manholes GRP (new + DI cover only) [1] | 2,777.85 |  | RD29 |
|  | 11 | **Gravel and Geotextile** |  | 2025-10-28 | 2025-10-29 |  |  |  |  |  |  |  |  |  |  |
| RSZone 1Road 29Storm NetworkA52510 |  | Zone 1 - Road 29 - Storm Network - Gravel and Geotextile - Installation | 2d | 2025-10-28 A | 2025-10-29 A | RSZone 1Road 29Storm NetworkA47480 | 100% |  |  |  |  | Contract Price Original Scope [146388 SAR]; Excavator Operator [7 h]; Dump Truck Operator [7 h]; Equipment Operator [7 h]; Water Truck Operator [7 h]; Labour [1249.79 h]; Gravel and Geotextile [1248] | 146,388.23 | 146,388.23 | RD29 |
|  | 9 | **Collection Chamber** |  | 2025-11-16 | 2026-11-30 |  |  |  |  |  |  |  |  |  |  |
| RSZone 1Road 29Storm NetworkA47440 |  | Zone 1 - Road 29 - Storm Network - Collection Chamber - Excavation | 4.9d | 2025-11-16 A | 2025-11-20 A | RSZone 1Road 29Storm NetworkA41370 | 100% |  |  |  |  | Contract Price Original Scope [9300.99 SAR]; Excavator Operator [30 h]; Dump Truck Operator [30 h]; Labour [79.41 h]; Collection Chamber [12] | 9,300.99 | 9,300.99 | RD29 |
| RSZone 1Road 29Storm NetworkA47450 |  | Zone 1 - Road 29 - Storm Network - Collection Chamber - Installation | 2d | 2025-11-23 A | 2025-11-24 A | RSZone 1Road 29Storm NetworkA47440 | 100% |  |  |  |  | Contract Price Original Scope [37203.9 SAR]; Crane Operator [7 h]; Boom Truck Operator [7 h]; Equipment Operator [7 h]; Labour [317.63 h]; Collection Chamber [12] | 37,203.95 | 37,203.95 | RD29 |
| RSZone 1Road 29Storm NetworkA47480 |  | Zone 1 - Road 29 - Storm Network - Collection Chamber - Backfilling | 3d | 2025-11-27 A | 2025-11-30 A | RSZone 1Road 29Storm NetworkA47450 | 100% | 2025-11-27 | 2025-12-01 |  |  | Contract Price Original Scope [3100.33 SAR]; Excavator Operator [20 h]; Compactor Operator [20 h]; Dump Truck Operator [20 h]; Water Truck Operator [20 h]; Labour [26.47 h]; Collection Chamber [12] | 3,100.33 | 3,100.33 | RD29 |
| RSZone 1Road 29Storm NetworkA47460-old |  | Zone 1 - Road 29 - Storm Network - Collection Chamber - D.I (old) | 130d | 2026-06-02 A | 2026-11-01 A | RSZone 1Road 28Storm NetworkA46960-old | 100% |  |  |  |  | Contract Price Original Scope [1033.44 SAR]; Crane Operator [1.17 h]; Boom Truck Operator [1.17 h]; Equipment Operator [1.17 h]; Labour [8.82 h]; Collection Chamber [2] | 1,033.44 | 1,033.44 | RD29 |
| RSZone 1Road 29Storm NetworkA47460 |  | Zone 1 - Road 29 - Storm Network - Collection Chamber - D.I | 2.5d | 2026-11-25 | 2026-11-28 | RSZone 1Road 29Storm NetworkA47460-old, RSZone 1Road 28Storm NetworkA46960 |  |  |  | 94.71d | 0d | Contract Price Original Scope [5167.22 SAR]; Crane Operator [5.83 h]; Boom Truck Operator [5.83 h]; Equipment Operator [5.83 h]; Labour [44.12 h]; Collection Chamber [10] | 5,167.22 |  | RD29 |
| RSZone 1Road 29Storm NetworkA47470 |  | Zone 1 - Road 29 - Storm Network - Collection Chamber - Inner Isolation | 2d | 2026-11-28 | 2026-11-30 | RSZone 1Road 29Storm NetworkA47460 |  |  |  | 106.48d | 92.08d | Contract Price Original Scope [6200.66 SAR]; Equipment Operator [20 h]; Labour [52.94 h]; Collection Chamber [12] | 6,200.66 |  | RD29 |
|  | 3 | **Sewage Network** |  | 2025-08-21 | 2026-11-16 |  |  |  |  |  |  |  |  |  |  |
|  | 1 | **UPVC Pipes** |  | 2025-08-21 | 2026-11-15 |  |  |  |  |  |  |  |  |  |  |
|  | 1 | **UPVC Pipes 150 MM** |  | 2025-08-21 | 2025-09-07 |  |  |  |  |  |  |  |  |  |  |
| RSZone 1Road 29Sewage NetworkA33450 |  | Zone 1 - Road 29 - Sewage Network - UPVC Pipes 150 MM - Excavation | 4d | 2025-08-21 A | 2025-08-25 A | RSZone 1Road 28Sewage NetworkA33950 | 100% | 2025-08-21 | 2025-08-26 |  |  | Contract Price Original Scope [3934.09 SAR]; Excavator Operator [30 h]; Dump Truck Operator [30 h]; Labour [33.59 h]; UPVC Pipes 150 MM [126] | 3,934.09 | 3,934.09 | RD29 |
| RSZone 1Road 29Sewage NetworkA33460 |  | Zone 1 - Road 29 - Sewage Network - UPVC Pipes 150 MM - Pipe Installation | 2.9d | 2025-08-26 A | 2025-08-28 A | RSZone 1Road 29Sewage NetworkA33450 | 100% |  |  |  |  | Contract Price Original Scope [17047.7 SAR]; Excavator Operator [40 h]; Crane Operator [40 h]; Equipment Operator [40 h]; Labour [145.54 h]; UPVC Pipes 150 MM [126] | 17,047.72 | 17,047.72 | RD29 |
| RSZone 1Road 29Sewage NetworkA33470 |  | Zone 1 - Road 29 - Sewage Network - UPVC Pipes 150 MM - Test | 2d | 2025-08-31 A | 2025-09-01 A | RSZone 1Road 29Sewage NetworkA33460 | 100% |  |  |  |  | Contract Price Original Scope [2622.73 SAR]; Pump Operator [20 h]; Equipment Operator [20 h]; Labour [22.39 h]; UPVC Pipes 150 MM [126] | 2,622.73 | 2,622.73 | RD29 |
| RSZone 1Road 29Sewage NetworkA33480 |  | Zone 1 - Road 29 - Sewage Network - UPVC Pipes 150 MM - Backfilling | 5d | 2025-09-02 A | 2025-09-07 A | RSZone 1Road 29Sewage NetworkA33470 | 100% |  |  |  |  | Contract Price Original Scope [2622.73 SAR]; Excavator Operator [20 h]; Compactor Operator [20 h]; Dump Truck Operator [20 h]; Water Truck Operator [20 h]; Labour [22.39 h]; UPVC Pipes 150 MM [126] | 2,622.73 | 2,622.73 | RD29 |

| ID | WBS | Activity | Duration | Start | Finish | Predecessors | Complete | Planned start | Planned finish | Total float | Free float | Resources | Cost | Actual cost | MODON |
| --- | --- | --- | --- | --- | --- | --- | --- | --- | --- | --- | --- | --- | --- | --- | --- |
|  | 2 | **UPVC Pipes 200 MM** |  | 2026-05-24 | 2026-11-15 |  |  |  |  |  |  |  |  |  |  |
| RSZone 1Road 29Sewage NetworkA33610-old |  | Zone 1 - Road 29 - Sewage Network - UPVC Pipes 200 MM - Excavation (old) | 138d | 2026-05-24 A | 2026-11-01 A | RSZone 1Road 29Sewage NetworkA33480 | 100% |  |  |  |  | Contract Price Original Scope [3091.81 SAR]; Excavator Operator [23.72 h]; Dump Truck Operator [23.72 h]; Labour [26.4 h]; UPVC Pipes 200 MM [40.32] | 3,091.81 | 3,091.81 | RD29 |
| RSZone 1Road 29Sewage NetworkA33620-old |  | Zone 1 - Road 29 - Sewage Network - UPVC Pipes 200 MM - Pipe Installation (old) | 136d | 2026-05-26 A | 2026-11-01 A | RSZone 1Road 29Sewage NetworkA33610-old | 100% |  |  |  |  | Contract Price Original Scope [12068 SAR]; Excavator Operator [28.48 h]; Crane Operator [28.48 h]; Equipment Operator [28.48 h]; Labour [103.03 h]; UPVC Pipes 200 MM [36.32] | 12,067.96 | 12,067.96 | RD29 |
| RSZone 1Road 29Sewage NetworkA33630-old |  | Zone 1 - Road 29 - Sewage Network - UPVC Pipes 200 MM - Test (old) | 134d | 2026-05-28 A | 2026-11-01 A | RSZone 1Road 29Sewage NetworkA33620-old | 100% | 2026-05-28 | 2026-11-02 |  |  | Contract Price Original Scope [475.83 SAR]; Pump Operator [3.65 h]; Equipment Operator [3.65 h]; Labour [4.06 h]; UPVC Pipes 200 MM [9.31] | 475.83 | 475.83 | RD29 |
| RSZone 1Road 29Sewage NetworkA33640-old |  | Zone 1 - Road 29 - Sewage Network - UPVC Pipes 200 MM - Backfilling (old) | 132d | 2026-05-31 A | 2026-11-01 A | RSZone 1Road 29Sewage NetworkA33630-old | 100% |  |  |  |  | Contract Price Original Scope [475.83 SAR]; Excavator Operator [3.65 h]; Compactor Operator [3.65 h]; Dump Truck Operator [3.65 h]; Water Truck Operator [3.65 h]; Labour [4.06 h]; UPVC Pipes 200 MM [9.31] | 475.83 | 475.83 | RD29 |
| RSZone 1Road 29Sewage NetworkA33610 |  | Zone 1 - Road 29 - Sewage Network - UPVC Pipes 200 MM - Excavation | 1d | 2026-11-09 | 2026-11-09 | RSZone 1Road 29Sewage NetworkA33610-old |  |  |  | 99.98d | 0d | Contract Price Original Scope [819.12 SAR]; Excavator Operator [6.28 h]; Dump Truck Operator [6.28 h]; Labour [6.99 h]; UPVC Pipes 200 MM [10.68] | 819.12 |  | RD29 |
| RSZone 1Road 29Sewage NetworkA33620 |  | Zone 1 - Road 29 - Sewage Network - UPVC Pipes 200 MM - Pipe Installation | 1.15d | 2026-11-10 | 2026-11-11 | RSZone 1Road 29Sewage NetworkA33620-old, RSZone 1Road 29Sewage NetworkA33610 |  |  |  | 99.98d | 0d | Contract Price Original Scope [4879.44 SAR]; Excavator Operator [11.52 h]; Crane Operator [11.52 h]; Equipment Operator [11.52 h]; Labour [41.66 h]; UPVC Pipes 200 MM [14.68] | 4,879.44 |  | RD29 |
| RSZone 1Road 29Sewage NetworkA33630 |  | Zone 1 - Road 29 - Sewage Network - UPVC Pipes 200 MM - Test | 1.64d | 2026-11-11 | 2026-11-12 | RSZone 1Road 29Sewage NetworkA33630-old, RSZone 1Road 29Sewage NetworkA33620 |  |  |  | 99.98d | 0d | Contract Price Original Scope [2131.46 SAR]; Pump Operator [16.35 h]; Equipment Operator [16.35 h]; Labour [18.2 h]; UPVC Pipes 200 MM [41.69] | 2,131.46 |  | RD29 |
| RSZone 1Road 29Sewage NetworkA33640 |  | Zone 1 - Road 29 - Sewage Network - UPVC Pipes 200 MM - Backfilling | 1.64d | 2026-11-12 | 2026-11-15 | RSZone 1Road 29Sewage NetworkA33640-old, RSZone 1Road 29Sewage NetworkA33630 |  |  |  | 99.98d | 99.38d | Contract Price Original Scope [2131.46 SAR]; Excavator Operator [16.35 h]; Compactor Operator [16.35 h]; Dump Truck Operator [16.35 h]; Water Truck Operator [16.35 h]; Labour [18.2 h]; UPVC Pipes 200 MM [41.69] | 2,131.46 |  | RD29 |
|  | 10 | **Manhole** |  | 2025-08-31 | 2026-11-16 |  |  |  |  |  |  |  |  |  |  |
| RSZone 1Road 29Sewage NetworkA33990 |  | Zone 1 - Road 29 - Sewage Network - Manhole - Excavation | 4.9d | 2025-08-31 A | 2025-09-04 A | RSZone 1Road 29Sewage NetworkA33480 | 100% |  |  |  |  | Contract Price Original Scope [9501.41 SAR]; Excavator Operator [30 h]; Dump Truck Operator [30 h]; Labour [81.12 h]; Manholes (all depths, GRP) [5] | 9,501.41 | 9,501.41 | RD29 |
| RSZone 1Road 29Sewage NetworkA34000 |  | Zone 1 - Road 29 - Sewage Network - Manhole - FOOTING | 4d | 2025-09-07 A | 2025-09-10 A | RSZone 1Road 29Sewage NetworkA33990 | 100% |  |  |  |  | Contract Price Original Scope [57008.5 SAR]; Labour [486.71 h]; Manholes (all depths, GRP) [5] | 57,008.48 | 57,008.48 | RD29 |
| RSZone 1Road 29Sewage NetworkA34010 |  | Zone 1 - Road 29 - Sewage Network - Manhole - MH INSTALLATION | 4d | 2025-09-11 A | 2025-09-15 A | RSZone 1Road 29Sewage NetworkA34000 | 100% | 2025-09-11 | 2025-09-16 |  |  | Contract Price Original Scope [66509.9 SAR]; Labour [567.83 h]; Manholes (all depths, GRP) [5] | 66,509.9 | 66,509.9 | RD29 |
| RSZone 1Road 29Sewage NetworkA34020 |  | Zone 1 - Road 29 - Sewage Network - Manhole - COVER INSTALLATION | 3d | 2026-11-09 | 2026-11-11 | RSZone 1Road 29Sewage NetworkA34010 |  |  |  | 98.4d | 0d | Contract Price Original Scope [91213.6 SAR]; Labour [778.73 h]; Manholes (all depths, GRP) [24] | 91,213.57 |  | RD29 |
| RSZone 1Road 29Sewage NetworkA34030 |  | Zone 1 - Road 29 - Sewage Network - Manhole - TEST | 2d | 2026-11-12 | 2026-11-14 | RSZone 1Road 29Sewage NetworkA34020 |  |  |  | 98.4d | 0d | Contract Price Original Scope [19002.8 SAR]; Pump Operator [20 h]; Equipment Operator [20 h]; Labour [162.24 h]; Manholes (all depths, GRP) [5] | 19,002.83 |  | RD29 |
| RSZone 1Road 29Sewage NetworkA34040 |  | Zone 1 - Road 29 - Sewage Network - Manhole - BACKFILLING | 2d | 2026-11-15 | 2026-11-16 | RSZone 1Road 29Sewage NetworkA34030 |  |  |  | 98.4d | 97.8d | Contract Price Original Scope [19002.8 SAR]; Excavator Operator [20 h]; Compactor Operator [20 h]; Dump Truck Operator [20 h]; Water Truck Operator [20 h]; Labour [162.24 h]; Manholes (all depths, GRP) [5] | 19,002.83 |  | RD29 |
|  | 7 | **Potable Network** |  | 2025-11-23 | 2026-11-18 |  |  |  |  |  |  |  |  |  |  |
|  | 1 | **Potable Pipes 200 MM** |  | 2026-06-09 | 2026-11-15 |  |  |  |  |  |  |  |  |  |  |
| RSZone 1Road 29Potable NetworkA54380-old |  | Zone 1 - Road 29 - Potable Network - Potable Pipes 200 MM - Excavation (old) | 124d | 2026-06-09 A | 2026-11-01 A | RSZone 1Road 28Potable NetworkA57780-old | 100% |  |  |  |  | Contract Price Original Scope [2075.35 SAR]; Excavator Operator [29.93 h]; Dump Truck Operator [29.93 h]; Labour [17.72 h]; Potable Pipes 200 MM [82.82] | 2,075.35 | 2,075.35 | RD29 |
| RSZone 1Road 29Potable NetworkA54390-old |  | Zone 1 - Road 29 - Potable Network - Potable Pipes 200 MM - Installation (old) | 123d | 2026-06-10 A | 2026-11-01 A | RSZone 1Road 29Potable NetworkA54380-old | 100% |  |  |  |  | Contract Price Original Scope [14527.4 SAR]; Labour [124.03 h]; Potable Pipes 200 MM [82.82] | 14,527.42 | 14,527.42 | RD29 |
| RSZone 1Road 29Potable NetworkA54400-old |  | Zone 1 - Road 29 - Potable Network - Potable Pipes 200 MM - Test (old) | 120d | 2026-06-14 A | 2026-11-01 A | RSZone 1Road 29Potable NetworkA54390-old | 100% |  |  |  |  | Contract Price Original Scope [2074.77 SAR]; Pump Operator [19.95 h]; Equipment Operator [19.95 h]; Labour [17.71 h]; Potable Pipes 200 MM [82.79] | 2,074.77 | 2,074.77 | RD29 |
| RSZone 1Road 29Potable NetworkA54410-old |  | Zone 1 - Road 29 - Potable Network - Potable Pipes 200 MM - Backfilling (old) | 119d | 2026-06-15 A | 2026-11-01 A | RSZone 1Road 29Potable NetworkA54400-old | 100% |  |  |  |  | Contract Price Original Scope [2074.77 SAR]; Excavator Operator [19.95 h]; Compactor Operator [19.95 h]; Dump Truck Operator [19.95 h]; Water Truck Operator [19.95 h]; Labour [17.71 h]; Potable Pipes 200 MM [82.79] | 2,074.77 | 2,074.77 | RD29 |
| RSZone 1Road 29Potable NetworkA54380 |  | Zone 1 - Road 29 - Potable Network - Potable Pipes 200 MM - Excavation | 1d | 2026-11-11 | 2026-11-11 | RSZone 1Road 29Potable NetworkA54380-old, RSZone 1Road 28Potable NetworkA57780 |  |  |  | 93.9d | 0d | Contract Price Original Scope [4.62 SAR]; Excavator Operator [0.07 h]; Dump Truck Operator [0.07 h]; Labour [0.04 h]; Potable Pipes 200 MM [0.18] | 4.62 |  | RD29 |
| RSZone 1Road 29Potable NetworkA54390 |  | Zone 1 - Road 29 - Potable Network - Potable Pipes 200 MM - Installation | 1d | 2026-11-12 | 2026-11-12 | RSZone 1Road 29Potable NetworkA54390-old, RSZone 1Road 29Potable NetworkA54380 |  |  |  | 95.4d | 0d | Contract Price Original Scope [32.36 SAR]; Labour [0.28 h]; Potable Pipes 200 MM [0.18] | 32.36 |  | RD29 |
| RSZone 1Road 29Potable NetworkA54400 |  | Zone 1 - Road 29 - Potable Network - Potable Pipes 200 MM - Test | 1d | 2026-11-14 | 2026-11-14 | RSZone 1Road 29Potable NetworkA54400-old, RSZone 1Road 29Potable NetworkA54390 |  |  |  | 95.4d | 0d | Contract Price Original Scope [5.2 SAR]; Pump Operator [0.05 h]; Equipment Operator [0.05 h]; Labour [0.04 h]; Potable Pipes 200 MM [0.21] | 5.2 |  | RD29 |
| RSZone 1Road 29Potable NetworkA54410 |  | Zone 1 - Road 29 - Potable Network - Potable Pipes 200 MM - Backfilling | 1d | 2026-11-15 | 2026-11-15 | RSZone 1Road 29Potable NetworkA54410-old, RSZone 1Road 29Potable NetworkA54400 |  |  |  | 95.4d | 95.2d | Contract Price Original Scope [5.2 SAR]; Excavator Operator [0.05 h]; Compactor Operator [0.05 h]; Dump Truck Operator [0.05 h]; Water Truck Operator [0.05 h]; Labour [0.04 h]; Potable Pipes 200 MM [0.21] | 5.2 |  | RD29 |

| ID | WBS | Activity | Duration | Start | Finish | Predecessors | Complete | Planned start | Planned finish | Total float | Free float | Resources | Cost | Actual cost | MODON |
| --- | --- | --- | --- | --- | --- | --- | --- | --- | --- | --- | --- | --- | --- | --- | --- |
|  | 6 | **Fittings** |  | 2026-06-14 | 2026-11-17 |  |  |  |  |  |  |  |  |  |  |
|  | 3 | **Tees** |  | 2026-06-14 | 2026-11-14 |  |  |  |  |  |  |  |  |  |  |
| RSZone 1Road 29Potable NetworkA55590-old |  | Zone 1 - Road 29 - Potable Network - Tees - Installation (old) | 120d | 2026-06-14 A | 2026-11-01 A | RSZone 1Road 29Potable NetworkA54380-old | 100% |  |  |  |  | Contract Price Original Scope [8998.81 SAR]; Labour [76.83 h]; Fittings - Tees (all sizes) [3] | 8,998.81 | 8,998.81 | RD29 |
| RSZone 1Road 29Potable NetworkA55590 |  | Zone 1 - Road 29 - Potable Network - Tees - Installation | 1.5d | 2026-11-12 | 2026-11-14 | RSZone 1Road 29Potable NetworkA55590-old, RSZone 1Road 29Potable NetworkA54380 |  |  |  | 93.9d | 0d | Contract Price Original Scope [8998.81 SAR]; Labour [76.83 h]; Fittings - Tees (all sizes) [3] | 8,998.81 |  | RD29 |
|  | 5 | **End Cap** |  | 2026-11-14 | 2026-11-17 |  |  |  |  |  |  |  |  |  |  |
| RSZone 1Road 29Potable NetworkA55600 |  | Zone 1 - Road 29 - Potable Network - End Cap - Installation | 3d | 2026-11-14 | 2026-11-17 | RSZone 1Road 29Potable NetworkA55590, RSZone 1Road 29Potable NetworkA54380, RSZone 1Road 28Potable NetworkA57780 |  |  |  | 93.9d | 93.7d | Contract Price Original Scope [1461.95 SAR]; Labour [12.48 h]; Fittings - End Caps (all sizes) [2] | 1,461.95 |  | RD29 |
|  | 2 | **Thurst Blocks** |  | 2026-06-17 | 2026-11-16 |  |  |  |  |  |  |  |  |  |  |
| RSZone 1Road 29Potable NetworkA55730-old |  | Zone 1 - Road 29 - Potable Network - Thurst Blocks - Thrust Block (old) | 117d | 2026-06-17 A | 2026-11-01 A | RSZone 1Road 29Potable NetworkA55590-old | 100% |  |  |  |  | Contract Price Original Scope [10120 SAR]; Crane Operator [6 h]; Pump Operator [6 h]; Equipment Operator [6 h]; Labour [86.4 h]; Thrust Blocks [3] | 10,120.02 | 10,120.02 | RD29 |
| RSZone 1Road 29Potable NetworkA55730 |  | Zone 1 - Road 29 - Potable Network - Thurst Blocks - Thrust Block | 1.8d | 2026-11-14 | 2026-11-16 | RSZone 1Road 29Potable NetworkA55730-old, RSZone 1Road 29Potable NetworkA55590 |  |  |  | 95.1d | 94.9d | Contract Price Original Scope [30360.1 SAR]; Crane Operator [18 h]; Pump Operator [18 h]; Equipment Operator [18 h]; Labour [259.2 h]; Thrust Blocks [9] | 30,360.07 |  | RD29 |
|  | 7 | **FIRE HYDRANT** |  | 2025-12-02 | 2026-11-16 |  |  |  |  |  |  |  |  |  |  |
| RSZone 1Road 29Potable NetworkA57840 |  | Zone 1 - Road 29 - Potable Network - FIRE HYDRANT - Excavation | 5d | 2025-12-02 A | 2025-12-07 A | RSZone 1Road 28Potable NetworkA55780 | 100% |  |  |  |  | Contract Price Original Scope [8323.69 SAR]; Excavator Operator [30 h]; Dump Truck Operator [30 h]; Labour [71.06 h]; Fire Hydrant [6] | 8,323.69 | 8,323.69 | RD29 |
| RSZone 1Road 29Potable NetworkA57850 |  | Zone 1 - Road 29 - Potable Network - FIRE HYDRANT - Buried Gate Valve Installation | 2d | 2025-12-08 A | 2025-12-09 A | RSZone 1Road 29Potable NetworkA57840 | 100% |  |  |  |  | Labour; Fire Hydrant [6] |  |  | RD29 |
| RSZone 1Road 29Potable NetworkA57860 |  | Zone 1 - Road 29 - Potable Network - FIRE HYDRANT - Fire Hydrant Installation | 5d | 2025-12-10 A | 2025-12-15 A | RSZone 1Road 29Potable NetworkA57850 | 100% |  |  |  |  | Contract Price Original Scope [60762.9 SAR]; Labour [518.76 h]; Fire Hydrant [6] | 60,762.95 | 60,762.95 | RD29 |
| RSZone 1Road 29Potable NetworkA57870 |  | Zone 1 - Road 29 - Potable Network - FIRE HYDRANT - Surface Box | 3d | 2026-11-09 | 2026-11-11 | RSZone 1Road 29Potable NetworkA57860 |  |  |  | 94.4d | 0d | Labour; Fire Hydrant [6] |  |  | RD29 |
| RSZone 1Road 29Potable NetworkA57880 |  | Zone 1 - Road 29 - Potable Network - FIRE HYDRANT - Test | 2d | 2026-11-12 | 2026-11-14 | RSZone 1Road 29Potable NetworkA57870 |  |  |  | 94.4d | 0d | Contract Price Original Scope [5826.58 SAR]; Pump Operator [20 h]; Equipment Operator [20 h]; Labour [49.74 h]; Fire Hydrant [6] | 5,826.58 |  | RD29 |
| RSZone 1Road 29Potable NetworkA57890 |  | Zone 1 - Road 29 - Potable Network - FIRE HYDRANT - Backfilling | 2d | 2026-11-15 | 2026-11-16 | RSZone 1Road 29Potable NetworkA57880 |  |  |  | 94.4d | 94.2d | Contract Price Original Scope [8323.69 SAR]; Excavator Operator [20 h]; Compactor Operator [20 h]; Dump Truck Operator [20 h]; Water Truck Operator [20 h]; Labour [71.06 h]; Fire Hydrant [6] | 8,323.69 |  | RD29 |
|  | 3 | **Sand Bedding** |  | 2025-11-23 | 2025-11-24 |  |  |  |  |  |  |  |  |  |  |
| RSZone 1Road 29Potable NetworkA55790 |  | Zone 1 - Road 29 - Potable Network - Sand Bedding - Bedding | 2d | 2025-11-23 A | 2025-11-24 A | RSZone 1Road 29Potable NetworkA57860 | 100% |  |  |  |  | Contract Price Original Scope [1542.53 SAR]; Compactor Operator [20 h]; Equipment Operator [20 h]; Water Truck Operator [20 h]; Labour [13.17 h]; Sand Bedding [83] | 1,542.53 | 1,542.53 | RD29 |
|  | 4 | **Buried Valves** |  | 2026-06-24 | 2026-11-18 |  |  |  |  |  |  |  |  |  |  |
| RSZone 1Road 29Potable NetworkA56170-old |  | Zone 1 - Road 29 - Potable Network - Buried Valves - Excavation (old) | 111d | 2026-06-24 A | 2026-11-01 A | RSZone 1Road 29Potable NetworkA57840 | 100% |  |  |  |  | Contract Price Original Scope [1602.34 SAR]; Excavator Operator [23.08 h]; Dump Truck Operator [23.08 h]; Labour [13.68 h]; Buried Valves [10] | 1,602.34 | 1,602.34 | RD29 |
| RSZone 1Road 29Potable NetworkA56180-old |  | Zone 1 - Road 29 - Potable Network - Buried Valves - Installation (old) | 110d | 2026-06-25 A | 2026-11-01 A | RSZone 1Road 29Potable NetworkA56170-old | 100% | 2026-06-25 | 2026-11-02 |  |  | Contract Price Original Scope [20830.5 SAR]; Labour [177.84 h]; Buried Valves [10] | 20,830.45 | 20,830.45 | RD29 |
| RSZone 1Road 29Potable NetworkA56200-old |  | Zone 1 - Road 29 - Potable Network - Buried Valves - Test (old) | 108d | 2026-06-28 A | 2026-11-01 A | RSZone 1Road 29Potable NetworkA56180-old | 100% |  |  |  |  | Contract Price Original Scope [3207 SAR]; Pump Operator [7.7 h]; Equipment Operator [7.7 h]; Labour [27.38 h]; Buried Valves [5] | 3,207 | 3,207 | RD29 |
| RSZone 1Road 29Potable NetworkA56170 |  | Zone 1 - Road 29 - Potable Network - Buried Valves - Excavation | 1d | 2026-11-09 | 2026-11-09 | RSZone 1Road 29Potable NetworkA56170-old |  |  |  | 93.17d | 0d | Contract Price Original Scope [480.12 SAR]; Excavator Operator [6.92 h]; Dump Truck Operator [6.92 h]; Labour [4.1 h]; Buried Valves [3] | 480.12 |  | RD29 |
| RSZone 1Road 29Potable NetworkA56180 |  | Zone 1 - Road 29 - Potable Network - Buried Valves - Installation | 1d | 2026-11-10 | 2026-11-10 | RSZone 1Road 29Potable NetworkA56180-old, RSZone 1Road 29Potable NetworkA56170 |  |  |  | 93.17d | 0d | Contract Price Original Scope [6241.62 SAR]; Labour [53.29 h]; Buried Valves [3] | 6,241.62 |  | RD29 |
| RSZone 1Road 29Potable NetworkA56200 |  | Zone 1 - Road 29 - Potable Network - Buried Valves - Test | 1.23d | 2026-11-11 | 2026-11-12 | RSZone 1Road 29Potable NetworkA56200-old, RSZone 1Road 29Potable NetworkA56180 |  |  |  | 93.17d | 0d | Contract Price Original Scope [5122.87 SAR]; Pump Operator [12.3 h]; Equipment Operator [12.3 h]; Labour [43.74 h]; Buried Valves [8] | 5,122.87 |  | RD29 |
| RSZone 1Road 29Potable NetworkA56190 |  | Zone 1 - Road 29 - Potable Network - Buried Valves - Surface Box | 3d | 2026-11-12 | 2026-11-16 | RSZone 1Road 29Potable NetworkA56200, RSZone 1Road 29Potable NetworkA56170, RSZone 1Road 29Potable NetworkA56180 |  |  |  | 93.17d | 0d | Labour; Buried Valves [13] |  |  | RD29 |
| RSZone 1Road 29Potable NetworkA56210 |  | Zone 1 - Road 29 - Potable Network - Buried Valves - Backfilling | 2d | 2026-11-16 | 2026-11-18 | RSZone 1Road 29Potable NetworkA56190 |  |  |  | 93.17d | 92.97d | Contract Price Original Scope [4164.93 SAR]; Excavator Operator [20 h]; Compactor Operator [20 h]; Dump Truck Operator [20 h]; Water Truck Operator [20 h]; Labour [35.56 h]; Buried Valves [13] | 4,164.93 |  | RD29 |

| ID | WBS | Activity | Duration | Start | Finish | Predecessors | Complete | Planned start | Planned finish | Total float | Free float | Resources | Cost | Actual cost | MODON |
| --- | --- | --- | --- | --- | --- | --- | --- | --- | --- | --- | --- | --- | --- | --- | --- |
|  | 5 | **Lateral Irrigation Network** |  | 2025-07-08 | 2026-11-18 |  |  |  |  |  |  |  |  |  |  |
|  | 6 | **HDPE Pipes** |  | 2025-07-08 | 2025-07-27 |  |  |  |  |  |  |  |  |  |  |
| RSZone 1Road 29Irrigation NetworkA24790 |  | Zone 1 - Road 29 - Lateral Irrigation Network - HDPE Pipes - Excavation | 2.9d | 2025-07-08 A | 2025-07-10 A | RSZone 1Road 28Irrigation NetworkA24410 | 100% |  |  |  |  | Contract Price Original Scope [1179.92 SAR]; Excavator Operator [30 h]; Dump Truck Operator [30 h]; Labour [10.07 h]; HDPE Pipes 125 MM [85] | 1,179.92 | 1,179.92 | RD29 |
| RSZone 1Road 29Irrigation NetworkA24800 |  | Zone 1 - Road 29 - Lateral Irrigation Network - HDPE Pipes - Pipe Installation | 7d | 2025-07-13 A | 2025-07-20 A | RSZone 1Road 29Irrigation NetworkA24790 | 100% |  |  |  |  | Contract Price Original Scope [8259.42 SAR]; Excavator Operator [40 h]; Crane Operator [40 h]; Equipment Operator [40 h]; Labour [70.51 h]; HDPE Pipes 125 MM [85] | 8,259.42 | 8,259.42 | RD29 |
| RSZone 1Road 29Irrigation NetworkA24810 |  | Zone 1 - Road 29 - Lateral Irrigation Network - HDPE Pipes - Test | 2d | 2025-07-21 A | 2025-07-22 A | RSZone 1Road 29Irrigation NetworkA24800 | 100% |  |  |  |  | Contract Price Original Scope [1179.92 SAR]; Pump Operator [20 h]; Equipment Operator [20 h]; Labour [10.07 h]; HDPE Pipes 125 MM [85] | 1,179.92 | 1,179.92 | RD29 |
| RSZone 1Road 29Irrigation NetworkA24820 |  | Zone 1 - Road 29 - Lateral Irrigation Network - HDPE Pipes - Backfilling | 4d | 2025-07-23 A | 2025-07-27 A | RSZone 1Road 29Irrigation NetworkA24810 | 100% |  |  |  |  | Contract Price Original Scope [1179.92 SAR]; Excavator Operator [20 h]; Compactor Operator [20 h]; Dump Truck Operator [20 h]; Water Truck Operator [20 h]; Labour [10.07 h]; HDPE Pipes 125 MM [85] | 1,179.92 | 1,179.92 | RD29 |
|  | 1 | **HDPE Fitting** |  | 2025-07-10 | 2025-07-14 |  |  |  |  |  |  |  |  |  |  |
|  | 1 | **Elbows** |  | 2025-07-10 | 2025-07-14 |  |  |  |  |  |  |  |  |  |  |
| RSZone 1Road 29Irrigation NetworkA24930 |  | Zone 1 - Road 29 - Lateral Irrigation Network - Elbows - Installation | 4d | 2025-07-10 A | 2025-07-14 A | RSZone 1Road 29Irrigation NetworkA24820 | 100% | 2025-07-10 | 2025-07-15 |  |  | Contract Price Original Scope [1299.46 SAR]; Labour [11.09 h]; Fittings - Elbows (all sizes) [1] | 1,299.46 | 1,299.46 | RD29 |
|  | 2 | **Tees** |  | 2025-07-13 | 2025-07-14 |  |  |  |  |  |  |  |  |  |  |
| RSZone 1Road 29Irrigation NetworkA25030 |  | Zone 1 - Road 29 - Lateral Irrigation Network - Tees - Installation | 2d | 2025-07-13 A | 2025-07-14 A | RSZone 1Road 29Irrigation NetworkA24930 | 100% |  |  |  |  | Contract Price Original Scope [3072.12 SAR]; Labour [26.23 h]; Fittings - Tees (all sizes) [2] | 3,072.12 | 3,072.12 | RD29 |
|  | 11 | **Valves** |  | 2026-05-10 | 2026-11-18 |  |  |  |  |  |  |  |  |  |  |
|  | 1 | **Buried Valves** |  | 2026-05-10 | 2026-11-18 |  |  |  |  |  |  |  |  |  |  |
| RSZone 1Road 29Irrigation NetworkA24620- |  | Zone 1 - Road 29 - Lateral Irrigation Network - Buried Valves - Excavation (old) | 150d | 2026-05-10 A | 2026-11-01 A | RSZone 1Road 29Irrigation NetworkA25030 | 100% |  |  |  |  | Contract Price Original Scope [605.31 SAR]; Excavator Operator [27 h]; Dump Truck Operator [27 h]; Labour [5.17 h]; Buried Valves [9] | 605.31 | 605.31 | RD29 |
| RSZone 1Road 29Irrigation NetworkA25200- |  | Zone 1 - Road 29 - Lateral Irrigation Network - Buried Valves - Installation (old) | 149d | 2026-05-11 A | 2026-11-01 A | RSZone 1Road 29Irrigation NetworkA24620- | 100% |  |  |  |  | Contract Price Original Scope [7869.03 SAR]; Labour [67.18 h]; Buried Valves [9] | 7,869.03 | 7,869.03 | RD29 |
| RSZone 1Road 29Irrigation NetworkA24620- |  | Zone 1 - Road 29 - Lateral Irrigation Network - Buried Valves - Excavation (old) | 1d | 2026-11-09 | 2026-11-09 | RSZone 1Road 29Irrigation NetworkA24620- |  |  |  | 92.4d | 0d | Contract Price Original Scope [67.26 SAR]; Excavator Operator [3 h]; Dump Truck Operator [3 h]; Labour [0.57 h]; Buried Valves [1] | 67.26 |  | RD29 |
| RSZone 1Road 29Irrigation NetworkA25200- |  | Zone 1 - Road 29 - Lateral Irrigation Network - Buried Valves - Installation (old) | 1d | 2026-11-10 | 2026-11-10 | RSZone 1Road 29Irrigation NetworkA25200-, RSZone 1Road 29Irrigation NetworkA24620- |  |  |  | 92.4d | 0d | Contract Price Original Scope [874.34 SAR]; Labour [7.46 h]; Buried Valves [1] | 874.34 |  | RD29 |
| RSZone 1Road 29Irrigation NetworkA25210 |  | Zone 1 - Road 29 - Lateral Irrigation Network - Buried Valves - Surface Box | 3d | 2026-11-11 | 2026-11-14 | RSZone 1Road 29Irrigation NetworkA25200-, RSZone 1Road 29Irrigation NetworkA24620- |  |  |  | 92.4d | 0d | Labour; Buried Valves [10] |  |  | RD29 |
| RSZone 1Road 29Irrigation NetworkA25220 |  | Zone 1 - Road 29 - Lateral Irrigation Network - Buried Valves - Test | 2d | 2026-11-15 | 2026-11-16 | RSZone 1Road 29Irrigation NetworkA25210 |  |  |  | 92.4d | 0d | Contract Price Original Scope [2690.26 SAR]; Pump Operator [20 h]; Equipment Operator [20 h]; Labour [22.97 h]; Buried Valves [10] | 2,690.26 |  | RD29 |
| RSZone 1Road 29Irrigation NetworkA25230 |  | Zone 1 - Road 29 - Lateral Irrigation Network - Buried Valves - Backfilling | 2d | 2026-11-17 | 2026-11-18 | RSZone 1Road 29Irrigation NetworkA25220 |  |  |  | 92.4d | 91.76d | Contract Price Original Scope [1345.13 SAR]; Excavator Operator [20 h]; Compactor Operator [20 h]; Dump Truck Operator [20 h]; Water Truck Operator [20 h]; Labour [11.48 h]; Buried Valves [10] | 1,345.13 |  | RD29 |
|  | 3 | **Bedding** |  | 2025-07-13 | 2025-07-14 |  |  |  |  |  |  |  |  |  |  |
| RSZone 1Road 29Irrigation NetworkA25760 |  | Zone 1 - Road 29 - Lateral Irrigation Network - Bedding - Bedding | 2d | 2025-07-13 A | 2025-07-14 A | RSZone 1Road 29Irrigation NetworkA25030 | 100% |  |  |  |  | Contract Price Original Scope [2189 SAR]; Compactor Operator [20 h]; Equipment Operator [20 h]; Water Truck Operator [20 h]; Labour [18.69 h]; Bedding [85] | 2,189 | 2,189 | RD29 |
|  | 4 | **Thrust Block** |  | 2025-07-15 | 2025-07-17 |  |  |  |  |  |  |  |  |  |  |
| RSZone 1Road 29Irrigation NetworkA25770 |  | Zone 1 - Road 29 - Lateral Irrigation Network - Thrust Block - Thrust Block | 2.9d | 2025-07-15 A | 2025-07-17 A | RSZone 1Road 29Irrigation NetworkA25760 | 100% |  |  |  |  | Contract Price Original Scope [3065.28 SAR]; Crane Operator [12 h]; Pump Operator [12 h]; Equipment Operator [12 h]; Labour [26.17 h]; Thrust Blocks [3] | 3,065.28 | 3,065.28 | RD29 |

| ID | WBS | Activity | Duration | Start | Finish | Predecessors | Complete | Planned start | Planned finish | Total float | Free float | Resources | Cost | Actual cost | MODON |
| --- | --- | --- | --- | --- | --- | --- | --- | --- | --- | --- | --- | --- | --- | --- | --- |
|  | 12 | **Telecom Network** |  | 2026-07-12 | 2026-11-24 |  |  |  |  |  |  |  |  |  |  |
|  | 1 | **Telecom Pipe** |  | 2026-07-12 | 2026-11-24 |  |  |  |  |  |  |  |  |  |  |
| RSZone 1Road 29Telecom NetworkA61440-old |  | Zone 1 - Road 29 - Telecom Network - Telecom Pipe - Excavation (old) | 96d | 2026-07-12 A | 2026-11-01 A | RSZone 1Road 28Telecom NetworkA68480-old | 100% |  |  |  |  | Contract Price Original Scope [1658.54 SAR]; Excavator Operator [4.93 h]; Dump Truck Operator [4.93 h]; Labour [14.16 h]; Telecom Pipe [76.96] | 1,658.54 | 1,658.54 | RD29 |
| RSZone 1Road 29Telecom NetworkA61450-old |  | Zone 1 - Road 29 - Telecom Network - Telecom Pipe - Concrete Pouring (old) | 95d | 2026-07-13 A | 2026-11-01 A | RSZone 1Road 29Telecom NetworkA61440-old | 100% |  |  |  |  | Contract Price Original Scope [11585.6 SAR]; Crane Operator [2.13 h]; Pump Operator [2.13 h]; Equipment Operator [2.13 h]; Labour [98.91 h]; Telecom Pipe [76.8] | 11,585.64 | 11,585.64 | RD29 |
| RSZone 1Road 29Telecom NetworkA61440 |  | Zone 1 - Road 29 - Telecom Network - Telecom Pipe - Excavation | 2.51d | 2026-11-16 | 2026-11-18 | RSZone 1Road 29Telecom NetworkA61440-old, RSZone 1Road 28Telecom NetworkA68480 |  |  |  | 92.81d | 0d | Contract Price Original Scope [8427.17 SAR]; Excavator Operator [25.07 h]; Dump Truck Operator [25.07 h]; Labour [71.95 h]; Telecom Pipe [391.04] | 8,427.17 |  | RD29 |
| RSZone 1Road 29Telecom NetworkA61450 |  | Zone 1 - Road 29 - Telecom Network - Telecom Pipe - Concrete Pouring | 1.09d | 2026-11-18 | 2026-11-19 | RSZone 1Road 29Telecom NetworkA61450-old, RSZone 1Road 29Telecom NetworkA61440 |  |  |  | 92.81d | 0d | Contract Price Original Scope [59014.3 SAR]; Crane Operator [10.87 h]; Pump Operator [10.87 h]; Equipment Operator [10.87 h]; Labour [503.83 h]; Telecom Pipe [391.2] | 59,014.34 |  | RD29 |
| RSZone 1Road 29Telecom NetworkA61460 |  | Zone 1 - Road 29 - Telecom Network - Telecom Pipe - Test | 2d | 2026-11-19 | 2026-11-22 | RSZone 1Road 29Telecom NetworkA61450, RSZone 1Road 29Telecom NetworkA61450 FF |  |  |  | 92.81d | 0d | Contract Price Original Scope [10085.7 SAR]; Pump Operator [20 h]; Equipment Operator [20 h]; Labour [86.11 h]; Telecom Pipe [468] | 10,085.71 |  | RD29 |
| RSZone 1Road 29Telecom NetworkA61470 |  | Zone 1 - Road 29 - Telecom Network - Telecom Pipe - Backfilling | 2d | 2026-11-22 | 2026-11-24 | RSZone 1Road 29Telecom NetworkA61460, RSZone 1Road 29Telecom NetworkA61460 FF |  |  |  | 92.81d | 92.41d | Contract Price Original Scope [10085.7 SAR]; Excavator Operator [20 h]; Compactor Operator [20 h]; Dump Truck Operator [20 h]; Water Truck Operator [20 h]; Labour [86.11 h]; Telecom Pipe [468] | 10,085.71 |  | RD29 |
|  | 12 | **Telecom Duct** |  | 2026-07-13 | 2026-11-24 |  |  |  |  |  |  |  |  |  |  |
| RSZone 1Road 29Telecom NetworkA66280-old |  | Zone 1 - Road 29 - Telecom Network - Telecom Duct - Excavation (old) | 95d | 2026-07-13 A | 2026-11-01 A | RSZone 1Road 29Telecom NetworkA61440-old | 100% |  |  |  |  | Contract Price Original Scope [1316.83 SAR]; Excavator Operator [29.75 h]; Dump Truck Operator [29.75 h]; Labour [11.24 h]; Telecom Duct (Road Crossing) [60.49] | 1,316.83 | 1,316.83 | RD29 |
| RSZone 1Road 29Telecom NetworkA66290-old |  | Zone 1 - Road 29 - Telecom Network - Telecom Duct - Concrete Pouring (old) | 93d | 2026-07-15 A | 2026-11-01 A | RSZone 1Road 29Telecom NetworkA66280-old | 100% |  |  |  |  | Contract Price Original Scope [18435.6 SAR]; Crane Operator [13.88 h]; Pump Operator [13.88 h]; Equipment Operator [13.88 h]; Labour [157.39 h]; Telecom Duct (Road Crossing) [60.49] | 18,435.57 | 18,435.57 | RD29 |
| RSZone 1Road 29Telecom NetworkA66280 |  | Zone 1 - Road 29 - Telecom Network - Telecom Duct - Excavation | 1d | 2026-11-04 A | 2026-11-08 A | RSZone 1Road 29Telecom NetworkA66280-old, RSZone 1Road 29Telecom NetworkA61440-old | 100% | 2026-11-11 | 2026-11-12 |  |  | Contract Price Original Scope [11.07 SAR]; Excavator Operator [0.25 h]; Dump Truck Operator [0.25 h]; Labour [0.09 h]; Telecom Duct (Road Crossing) [0.51] | 11.07 | 11.07 | RD29 |
| RSZone 1Road 29Telecom NetworkA66290 |  | Zone 1 - Road 29 - Telecom Network - Telecom Duct - Concrete Pouring | 1d | 2026-11-18 | 2026-11-19 | RSZone 1Road 29Telecom NetworkA66290-old, RSZone 1Road 29Telecom NetworkA66280, RSZone 1Road 29Telecom NetworkA61440 |  |  |  | 92.89d | 0d | Contract Price Original Scope [154.92 SAR]; Crane Operator [0.12 h]; Pump Operator [0.12 h]; Equipment Operator [0.12 h]; Labour [1.32 h]; Telecom Duct (Road Crossing) [0.51] | 154.92 |  | RD29 |
| RSZone 1Road 29Telecom NetworkA66300 |  | Zone 1 - Road 29 - Telecom Network - Telecom Duct - Test | 2d | 2026-11-19 | 2026-11-22 | RSZone 1Road 29Telecom NetworkA66290 |  |  |  | 92.89d | 0d | Contract Price Original Scope [2655.78 SAR]; Pump Operator [20 h]; Equipment Operator [20 h]; Labour [22.67 h]; Telecom Duct (Road Crossing) [61] | 2,655.78 |  | RD29 |
| RSZone 1Road 29Telecom NetworkA66310 |  | Zone 1 - Road 29 - Telecom Network - Telecom Duct - Backfilling | 2d | 2026-11-22 | 2026-11-24 | RSZone 1Road 29Telecom NetworkA66300, RSZone 1Road 29Telecom NetworkA66280 |  |  |  | 92.89d | 92.49d | Contract Price Original Scope [3983.68 SAR]; Excavator Operator [20 h]; Compactor Operator [20 h]; Dump Truck Operator [20 h]; Water Truck Operator [20 h]; Labour [34.01 h]; Telecom Duct (Road Crossing) [61] | 3,983.68 |  | RD29 |
|  | 2 | **TELECOM MANHOLE** |  | 2026-07-23 | 2026-11-16 |  |  |  |  |  |  |  |  |  |  |
| RSZone 1Road 29Telecom NetworkA68600-old |  | Zone 1 - Road 29 - Telecom Network - TELECOM MANHOLE - Manhole Installation (old) | 86d | 2026-07-23 A | 2026-11-01 A | RSZone 1Road 28Telecom NetworkA68480-old | 100% | 2026-07-23 | 2026-11-02 |  |  | Contract Price Original Scope [71288.3 SAR]; Crane Operator [13.3 h]; Boom Truck Operator [13.3 h]; Equipment Operator [13.3 h]; Labour [608.62 h]; Telecom Manhole [4.75] | 71,288.33 | 71,288.33 | RD29 |
| RSZone 1Road 29Telecom NetworkA68600 |  | Zone 1 - Road 29 - Telecom Network - TELECOM MANHOLE - Manhole Installation | 1d | 2026-11-16 | 2026-11-16 | RSZone 1Road 29Telecom NetworkA68600-old, RSZone 1Road 28Telecom NetworkA68480 |  |  |  | 76.4d | 0d | Contract Price Original Scope [3752.02 SAR]; Crane Operator [0.7 h]; Boom Truck Operator [0.7 h]; Equipment Operator [0.7 h]; Labour [32.03 h]; Telecom Manhole [0.25] | 3,752.02 |  | RD29 |
|  | 16 | **Road 30** |  | 2025-07-16 | 2027-03-11 |  |  |  |  |  |  |  |  |  |  |
|  | 8 | **Storm Network** |  | 2025-09-03 | 2027-03-11 |  |  |  |  |  |  |  |  |  |  |
|  | 3 | **Collection Pipes 150 MM** |  | 2026-07-12 | 2026-11-12 |  |  |  |  |  |  |  |  |  |  |
| RSZone 1Road 30Storm NetworkA88370 |  | Zone 1 - Road 30 - Storm Network - Collection Pipes 150 MM - Excavation | 4d | 2026-07-12 A | 2026-07-15 A | RSZone 1Road 29Storm NetworkA52510 | 100% |  |  |  |  | Contract Price Original Scope [1013.16 SAR]; Excavator Operator [30 h]; Dump Truck Operator [30 h]; Labour [8.65 h]; Collection Pipes 150 MM [212] | 1,013.16 | 1,013.16 | RD30 |
| RSZone 1Road 30Storm NetworkA88380 |  | Zone 1 - Road 30 - Storm Network - Collection Pipes 150 MM - Bedding | 3d | 2026-07-16 A | 2026-07-19 A | RSZone 1Road 30Storm NetworkA88370 | 100% | 2026-07-16 | 2026-07-20 |  |  | Contract Price Original Scope [506.58 SAR]; Compactor Operator [20 h]; Equipment Operator [20 h]; Water Truck Operator [20 h]; Labour [4.32 h]; Collection Pipes 150 MM [212] | 506.58 | 506.58 | RD30 |
| RSZone 1Road 30Storm NetworkA88390 |  | Zone 1 - Road 30 - Storm Network - Collection Pipes 150 MM - Pipe Installation | 3d | 2026-07-20 A | 2026-07-22 A | RSZone 1Road 30Storm NetworkA88380 | 100% |  |  |  |  | Contract Price Original Scope [6585.56 SAR]; Excavator Operator [40 h]; Crane Operator [40 h]; Equipment Operator [40 h]; Labour [56.22 h]; Collection Pipes 150 MM [212] | 6,585.56 | 6,585.56 | RD30 |
| RSZone 1Road 30Storm NetworkA88400 |  | Zone 1 - Road 30 - Storm Network - Collection Pipes 150 MM - Test | 2d | 2026-11-09 | 2026-11-10 | RSZone 1Road 30Storm NetworkA88390 |  |  |  | 121.4d | 0d | Contract Price Original Scope [1013.16 SAR]; Pump Operator [20 h]; Equipment Operator [20 h]; Labour [8.65 h]; Collection Pipes 150 MM [212] | 1,013.16 |  | RD30 |
| RSZone 1Road 30Storm NetworkA88410 |  | Zone 1 - Road 30 - Storm Network - Collection Pipes 150 MM - Backfilling | 2d | 2026-11-11 | 2026-11-12 | RSZone 1Road 30Storm NetworkA88400 |  |  |  | 121.4d | 107d | Contract Price Original Scope [1013.16 SAR]; Excavator Operator [20 h]; Compactor Operator [20 h]; Dump Truck Operator [20 h]; Water Truck Operator [20 h]; Labour [8.65 h]; Collection Pipes 150 MM [212] | 1,013.16 |  | RD30 |

| ID | WBS | Activity | Duration | Start | Finish | Predecessors | Complete | Planned start | Planned finish | Total float | Free float | Resources | Cost | Actual cost | MODON |
| --- | --- | --- | --- | --- | --- | --- | --- | --- | --- | --- | --- | --- | --- | --- | --- |
|  | 2 | **Storm Pipes 500 MM** |  | 2025-09-03 | 2026-11-12 |  |  |  |  |  |  |  |  |  |  |
| RSZone 1Road 30Storm NetworkA34840 |  | Zone 1 - Road 30 - Storm Network - Storm Pipes 500 MM - Excavation | 6d | 2025-09-03 A | 2025-09-09 A | RSZone 1Road 30Storm NetworkA88390 | 100% |  |  |  |  | Contract Price Original Scope [5502.24 SAR]; Excavator Operator [30 h]; Dump Truck Operator [30 h]; Labour [46.98 h]; Storm Pipes 500 MM [89] | 5,502.24 | 5,502.24 | RD30 |
| RSZone 1Road 30Storm NetworkA34850 |  | Zone 1 - Road 30 - Storm Network - Storm Pipes 500 MM - Bedding | 1.9d | 2025-09-10 A | 2025-09-11 A | RSZone 1Road 30Storm NetworkA34840 | 100% |  |  |  |  | Contract Price Original Scope [23069.4 SAR]; Compactor Operator [20 h]; Equipment Operator [20 h]; Water Truck Operator [20 h]; Labour [196.95 h]; Storm Pipes 500 MM - Bedding [89] | 23,069.36 | 23,069.36 | RD30 |
| RSZone 1Road 30Storm NetworkA34860 |  | Zone 1 - Road 30 - Storm Network - Storm Pipes 500 MM - Pipe Installation | 7d | 2025-09-14 A | 2025-09-21 A | RSZone 1Road 30Storm NetworkA34850 | 100% |  |  |  |  | Contract Price Original Scope [38515.7 SAR]; Excavator Operator [40 h]; Crane Operator [40 h]; Equipment Operator [40 h]; Labour [328.83 h]; Storm Pipes 500 MM [89] | 38,515.66 | 38,515.66 | RD30 |
| RSZone 1Road 30Storm NetworkA34870 |  | Zone 1 - Road 30 - Storm Network - Storm Pipes 500 MM - Test | 2d | 2026-11-09 | 2026-11-10 | RSZone 1Road 30Storm NetworkA34860 |  |  |  | 121.4d | 0d | Contract Price Original Scope [5502.24 SAR]; Pump Operator [20 h]; Equipment Operator [20 h]; Labour [46.98 h]; Storm Pipes 500 MM [89] | 5,502.24 |  | RD30 |
| RSZone 1Road 30Storm NetworkA34880 |  | Zone 1 - Road 30 - Storm Network - Storm Pipes 500 MM - Backfilling | 2d | 2026-11-11 | 2026-11-12 | RSZone 1Road 30Storm NetworkA34870 |  |  |  | 121.4d | 107d | Contract Price Original Scope [5502.24 SAR]; Excavator Operator [20 h]; Compactor Operator [20 h]; Dump Truck Operator [20 h]; Water Truck Operator [20 h]; Labour [46.98 h]; Storm Pipes 500 MM [89] | 5,502.24 |  | RD30 |
|  | 1 | **Perforated 160 mm** |  | 2025-10-12 | 2026-11-10 |  |  |  |  |  |  |  |  |  |  |
| RSZone 1Road 30Storm NetworkA50890 |  | Zone 1 - Road 30 - Storm Network - Perforated 160 mm - Excavation | 3d | 2025-10-12 A | 2025-10-14 A | RSZone 1Road 30Storm NetworkA34860 | 100% |  |  |  |  | Contract Price Original Scope [25956.7 SAR]; Excavator Operator [30 h]; Dump Truck Operator [30 h]; Labour [221.6 h]; Perforated 160 mm [1624] | 25,956.66 | 25,956.66 | RD30 |
| RSZone 1Road 30Storm NetworkA50900 |  | Zone 1 - Road 30 - Storm Network - Perforated 160 mm - Bedding | 1.9d | 2025-10-15 A | 2025-10-16 A | RSZone 1Road 30Storm NetworkA50890 | 100% |  |  |  |  | Contract Price Original Scope [12978.3 SAR]; Compactor Operator [20 h]; Equipment Operator [20 h]; Water Truck Operator [20 h]; Labour [110.8 h]; Perforated 160 mm [1624] | 12,978.33 | 12,978.33 | RD30 |
| RSZone 1Road 30Storm NetworkA50910 |  | Zone 1 - Road 30 - Storm Network - Perforated 160 mm - Pipe Installation | 7d | 2025-10-19 A | 2025-10-26 A | RSZone 1Road 30Storm NetworkA50900 | 100% |  |  |  |  | Contract Price Original Scope [168718 SAR]; Excavator Operator [40 h]; Crane Operator [40 h]; Equipment Operator [40 h]; Labour [1440.43 h]; Perforated 160 mm [1624] | 168,718.27 | 168,718.27 | RD30 |
| RSZone 1Road 30Storm NetworkA50930 |  | Zone 1 - Road 30 - Storm Network - Perforated 160 mm - Backfilling | 3.9d | 2025-10-27 A | 2025-10-30 A | RSZone 1Road 30Storm NetworkA50910 | 100% |  |  |  |  | Contract Price Original Scope [25956.7 SAR]; Excavator Operator [20 h]; Compactor Operator [20 h]; Dump Truck Operator [20 h]; Water Truck Operator [20 h]; Labour [221.6 h]; Perforated 160 mm [1624] | 25,956.66 | 25,956.66 | RD30 |
| RSZone 1Road 30Storm NetworkA50920 |  | Zone 1 - Road 30 - Storm Network - Perforated 160 mm - Test | 2d | 2026-11-09 | 2026-11-10 | RSZone 1Road 30Storm NetworkA50930 |  |  |  | 123.4d | 109d | Contract Price Original Scope [25956.7 SAR]; Pump Operator [20 h]; Equipment Operator [20 h]; Labour [221.6 h]; Perforated 160 mm [1624] | 25,956.66 |  | RD30 |
|  | 11 | **Gravel and Geotextile** |  | 2025-10-30 | 2025-11-02 |  |  |  |  |  |  |  |  |  |  |
| RSZone 1Road 30Storm NetworkA52620 |  | Zone 1 - Road 30 - Storm Network - Gravel and Geotextile - Installation | 3d | 2025-10-30 A | 2025-11-02 A | RSZone 1Road 30Storm NetworkA50930 | 100% | 2025-10-30 | 2025-11-03 |  |  | Contract Price Original Scope [190492 SAR]; Excavator Operator [7 h]; Dump Truck Operator [7 h]; Equipment Operator [7 h]; Water Truck Operator [7 h]; Labour [1626.33 h]; Gravel and Geotextile [1624] | 190,492.38 | 190,492.38 | RD30 |
|  | 8 | **Manhole** |  | 2025-09-18 | 2026-11-19 |  |  |  |  |  |  |  |  |  |  |
| RSZone 1Road 30Storm NetworkA41420 |  | Zone 1 - Road 30 - Storm Network - Manhole - Excavation | 4d | 2025-09-18 A | 2025-09-23 A | RSZone 1Road 30Storm NetworkA52620 | 100% | 2025-09-18 | 2025-09-24 |  |  | Contract Price Original Scope [1388.93 SAR]; Excavator Operator [30 h]; Dump Truck Operator [30 h]; Labour [11.86 h]; Manholes GRP (new + DI cover only) [1] | 1,388.93 | 1,388.93 | RD30 |
| RSZone 1Road 30Storm NetworkA41430 |  | Zone 1 - Road 30 - Storm Network - Manhole - FOOTING | 5d | 2025-09-24 A | 2025-09-29 A | RSZone 1Road 30Storm NetworkA41420 | 100% |  |  |  |  | Contract Price Original Scope [8333.56 SAR]; Crane Operator [7 h]; Pump Operator [7 h]; Equipment Operator [7 h]; Labour [71.15 h]; Manholes GRP (new + DI cover only) [1] | 8,333.56 | 8,333.56 | RD30 |
| RSZone 1Road 30Storm NetworkA41440 |  | Zone 1 - Road 30 - Storm Network - Manhole - MH INSTALLATION | 2.9d | 2025-09-30 A | 2025-10-02 A | RSZone 1Road 30Storm NetworkA41430 | 100% |  |  |  |  | Contract Price Original Scope [8333.56 SAR]; Crane Operator [7 h]; Boom Truck Operator [7 h]; Equipment Operator [7 h]; Labour [71.15 h]; Manholes GRP (new + DI cover only) [1] | 8,333.56 | 8,333.56 | RD30 |
| RSZone 1Road 30Storm NetworkA41450 |  | Zone 1 - Road 30 - Storm Network - Manhole - CONCRETE SLAB | 3d | 2026-11-09 | 2026-11-11 | RSZone 1Road 30Storm NetworkA41440 |  |  |  | 115.4d | 0d | Contract Price Original Scope [1388.93 SAR]; Crane Operator [7 h]; Pump Operator [7 h]; Equipment Operator [7 h]; Labour [11.86 h]; Manholes GRP (new + DI cover only) [1] | 1,388.93 |  | RD30 |
| RSZone 1Road 30Storm NetworkA41460 |  | Zone 1 - Road 30 - Storm Network - Manhole - COVER INSTALLATION | 3d | 2026-11-12 | 2026-11-15 | RSZone 1Road 30Storm NetworkA41450 |  |  |  | 115.4d | 0d | Contract Price Original Scope [19445 SAR]; Crane Operator [7 h]; Boom Truck Operator [7 h]; Equipment Operator [7 h]; Labour [166.01 h]; Manholes GRP (new + DI cover only) [7] | 19,444.97 |  | RD30 |
| RSZone 1Road 30Storm NetworkA41480 |  | Zone 1 - Road 30 - Storm Network - Manhole - BACKFILLING | 2d | 2026-11-16 | 2026-11-17 | RSZone 1Road 30Storm NetworkA41460 |  |  |  | 115.4d | 0d | Contract Price Original Scope [2777.85 SAR]; Excavator Operator [20 h]; Compactor Operator [20 h]; Dump Truck Operator [20 h]; Water Truck Operator [20 h]; Labour [23.72 h]; Manholes GRP (new + DI cover only) [1] | 2,777.85 |  | RD30 |
| RSZone 1Road 30Storm NetworkA41470 |  | Zone 1 - Road 30 - Storm Network - Manhole - TEST | 2d | 2026-11-18 | 2026-11-19 | RSZone 1Road 30Storm NetworkA41480 |  |  |  | 115.4d | 101d | Contract Price Original Scope [2777.85 SAR]; Pump Operator [20 h]; Equipment Operator [20 h]; Labour [23.72 h]; Manholes GRP (new + DI cover only) [1] | 2,777.85 |  | RD30 |
|  | 9 | **Collection Chamber** |  | 2025-11-16 | 2026-12-03 |  |  |  |  |  |  |  |  |  |  |
| RSZone 1Road 30Storm NetworkA47940 |  | Zone 1 - Road 30 - Storm Network - Collection Chamber - Excavation | 4d | 2025-11-16 A | 2025-11-19 A | RSZone 1Road 30Storm NetworkA41440 | 100% |  |  |  |  | Contract Price Original Scope [8525.91 SAR]; Excavator Operator [30 h]; Dump Truck Operator [30 h]; Labour [72.79 h]; Collection Chamber [11] | 8,525.91 | 8,525.91 | RD30 |
| RSZone 1Road 30Storm NetworkA47950 |  | Zone 1 - Road 30 - Storm Network - Collection Chamber - Installation | 3d | 2025-11-20 A | 2025-11-23 A | RSZone 1Road 30Storm NetworkA47940 | 100% | 2025-11-20 | 2025-11-24 |  |  | Contract Price Original Scope [34103.6 SAR]; Crane Operator [7 h]; Boom Truck Operator [7 h]; Equipment Operator [7 h]; Labour [291.16 h]; Collection Chamber [11] | 34,103.62 | 34,103.62 | RD30 |
| RSZone 1Road 30Storm NetworkA47980 |  | Zone 1 - Road 30 - Storm Network - Collection Chamber - Backfilling | 4d | 2025-11-26 A | 2025-11-30 A | RSZone 1Road 30Storm NetworkA47950 | 100% |  |  |  |  | Contract Price Original Scope [2841.97 SAR]; Excavator Operator [20 h]; Compactor Operator [20 h]; Dump Truck Operator [20 h]; Water Truck Operator [20 h]; Labour [24.26 h]; Collection Chamber [11] | 2,841.97 | 2,841.97 | RD30 |
| RSZone 1Road 30Storm NetworkA47960-old |  | Zone 1 - Road 30 - Storm Network - Collection Chamber - D.I (old) | 128d | 2026-06-04 A | 2026-11-01 A | RSZone 1Road 30Storm NetworkA47980, RSZone 1Road 29Storm NetworkA47460-old | 100% | 2026-06-04 | 2026-11-02 |  |  | Contract Price Original Scope [1032.58 SAR]; Crane Operator [1.27 h]; Boom Truck Operator [1.27 h]; Equipment Operator [1.27 h]; Labour [8.82 h]; Collection Chamber [2] | 1,032.58 | 1,032.58 | RD30 |
| RSZone 1Road 30Storm NetworkA47960 |  | Zone 1 - Road 30 - Storm Network - Collection Chamber - D.I | 2.46d | 2026-11-28 | 2026-12-01 | RSZone 1Road 30Storm NetworkA47960-old, RSZone 1Road 29Storm NetworkA47460 |  |  |  | 94.71d | 0d | Contract Price Original Scope [4651.36 SAR]; Crane Operator [5.73 h]; Boom Truck Operator [5.73 h]; Equipment Operator [5.73 h]; Labour [39.71 h]; Collection Chamber [9] | 4,651.36 |  | RD30 |
| RSZone 1Road 30Storm NetworkA47970 |  | Zone 1 - Road 30 - Storm Network - Collection Chamber - Inner Isolation | 2d | 2026-12-01 | 2026-12-03 | RSZone 1Road 30Storm NetworkA47960 |  |  |  | 104.03d | 89.62d | Contract Price Original Scope [5683.94 SAR]; Equipment Operator [20 h]; Labour [48.53 h]; Collection Chamber [11] | 5,683.94 |  | RD30 |

| ID | WBS | Activity | Duration | Start | Finish | Predecessors | Complete | Total float | Free float | Resources | Cost | Actual cost | MODON |
| --- | --- | --- | --- | --- | --- | --- | --- | --- | --- | --- | --- | --- | --- |
|  | 6 | **Box Culvert** |  | 2027-02-14 | 2027-03-11 |  |  |  |  |  |  |  |  |
| RSZone 1Road 30Storm NetworkA40690 |  | Zone 1 - Road 30 - Storm Network - Box Culvert - Excavation | 5d | 2027-02-14 | 2027-02-18 | RSZone 1Road 29Storm NetworkA40290 |  | 14.4d | 0d | Contract Price Original Scope [23703.2 SAR]; Excavator Operator [30 h]; Dump Truck Operator [30 h]; Labour [202.37 h]; Box Culvert (all sizes/depths) [55] | 23,703.24 |  | RD30 |
| RSZone 1Road 30Storm NetworkA40710 |  | Zone 1 - Road 30 - Storm Network - Box Culvert - SLAB INSTALLATIO | 3d | 2027-02-20 | 2027-02-25 | RSZone 1Road 30Storm NetworkA40690 |  | 27.4d | 0d | Contract Price Original Scope [47406.5 SAR]; Crane Operator [7 h]; Pump Operator [7 h]; Equipment Operator [7 h]; Labour [404.73 h]; Box Culvert (all sizes/depths) [55] | 47,406.47 |  | RD30 |
| RSZone 1Road 30Storm NetworkA40700 |  | Zone 1 - Road 30 - Storm Network - Box Culvert - Installation | 3d | 2027-02-27 | 2027-03-03 | RSZone 1Road 30Storm NetworkA40710 |  | 27.4d | 0d | Contract Price Original Scope [118516 SAR]; Crane Operator [7 h]; Equipment Operator [7 h]; Labour [1011.83 h]; Box Culvert (all sizes/depths) [55] | 118,516.18 |  | RD30 |
| RSZone 1Road 30Storm NetworkA40720 |  | Zone 1 - Road 30 - Storm Network - Box Culvert - TEST | 2d | 2027-03-04 | 2027-03-08 | RSZone 1Road 30Storm NetworkA40700 |  | 27.4d | 0d | Contract Price Original Scope [23703.2 SAR]; Pump Operator [20 h]; Equipment Operator [20 h]; Labour [202.37 h]; Box Culvert (all sizes/depths) [55] | 23,703.24 |  | RD30 |
| RSZone 1Road 30Storm NetworkA40730 |  | Zone 1 - Road 30 - Storm Network - Box Culvert - BACKFILLING | 2d | 2027-03-08 | 2027-03-11 | RSZone 1Road 30Storm NetworkA40720 |  | 27.4d | 13d | Contract Price Original Scope [23703.2 SAR]; Excavator Operator [20 h]; Compactor Operator [20 h]; Dump Truck Operator [20 h]; Water Truck Operator [20 h]; Labour [202.37 h]; Box Culvert (all sizes/depths) [55] | 23,703.24 |  | RD30 |
|  | 2 | **Sewage** |  | 2025-08-31 | 2026-11-16 |  |  |  |  |  |  |  |  |
|  | 10 | **Manhole** |  | 2025-08-31 | 2026-11-16 |  |  |  |  |  |  |  |  |
| RSZone 1Road 30Sewage NetworkA34050 |  | Zone 1 - Road 30 - Sewage Network - Manhole - Excavation | 3d | 2025-08-31 A | 2025-09-02 A | RSZone 1Road 29Sewage NetworkA34010 | 100% |  |  | Contract Price Original Scope [39905.9 SAR]; Excavator Operator [30 h]; Dump Truck Operator [30 h]; Labour [340.7 h]; Manholes (all depths, GRP) [21] | 39,905.94 | 39,905.94 | RD30 |
| RSZone 1Road 30Sewage NetworkA34060 |  | Zone 1 - Road 30 - Sewage Network - Manhole - FOOTING | 6d | 2025-09-03 A | 2025-09-09 A | RSZone 1Road 30Sewage NetworkA34050 | 100% |  |  | Contract Price Original Scope [239436 SAR]; Crane Operator [5 h]; Pump Operator [5 h]; Equipment Operator [5 h]; Labour [2044.18 h]; Manholes (all depths, GRP) [21] | 239,435.62 | 239,435.62 | RD30 |
| RSZone 1Road 30Sewage NetworkA34070 |  | Zone 1 - Road 30 - Sewage Network - Manhole - MH INSTALLATION | 5d | 2025-09-10 A | 2025-09-15 A | RSZone 1Road 30Sewage NetworkA34060 | 100% |  |  | Contract Price Original Scope [279342 SAR]; Crane Operator [5 h]; Boom Truck Operator [5 h]; Equipment Operator [5 h]; Labour [2384.87 h]; Manholes (all depths, GRP) [21] | 279,341.56 | 279,341.56 | RD30 |
| RSZone 1Road 30Sewage NetworkA34080 |  | Zone 1 - Road 30 - Sewage Network - Manhole - COVER INSTALLATION | 3d | 2026-11-09 | 2026-11-11 | RSZone 1Road 30Sewage NetworkA34070 |  | 98.4d | 0d | Contract Price Original Scope [205231 SAR]; Crane Operator [5 h]; Boom Truck Operator [5 h]; Equipment Operator [5 h]; Labour [1752.15 h]; Manholes (all depths, GRP) [54] | 205,230.53 |  | RD30 |
| RSZone 1Road 30Sewage NetworkA34090 |  | Zone 1 - Road 30 - Sewage Network - Manhole - TEST | 2d | 2026-11-12 | 2026-11-14 | RSZone 1Road 30Sewage NetworkA34080 |  | 98.4d | 0d | Contract Price Original Scope [79811.9 SAR]; Pump Operator [20 h]; Equipment Operator [20 h]; Labour [681.39 h]; Manholes (all depths, GRP) [21] | 79,811.87 |  | RD30 |
| RSZone 1Road 30Sewage NetworkA34100 |  | Zone 1 - Road 30 - Sewage Network - Manhole - BACKFILLING | 2d | 2026-11-15 | 2026-11-16 | RSZone 1Road 30Sewage NetworkA34090 |  | 98.4d | 97.8d | Contract Price Original Scope [79811.9 SAR]; Excavator Operator [20 h]; Compactor Operator [20 h]; Dump Truck Operator [20 h]; Water Truck Operator [20 h]; Labour [681.39 h]; Manholes (all depths, GRP) [21] | 79,811.87 |  | RD30 |
|  | 7 | **Potable Network** |  | 2025-11-12 | 2026-11-18 |  |  |  |  |  |  |  |  |
|  | 1 | **Potable Pipes 200 MM** |  | 2026-06-09 | 2026-11-12 |  |  |  |  |  |  |  |  |
| RSZone 1Road 30Potable NetworkA54660-old |  | Zone 1 - Road 30 - Potable Network - Potable Pipes 200 MM - Excavation (old) | 124d | 2026-06-09 A | 2026-11-01 A | RSZone 1Road 29Potable NetworkA55790 | 100% |  |  | Contract Price Original Scope [7789.29 SAR]; Excavator Operator [29.98 h]; Dump Truck Operator [29.98 h]; Labour [66.5 h]; Potable Pipes 200 MM [310.83] | 7,789.28 | 7,789.28 | RD30 |
| RSZone 1Road 30Potable NetworkA54670-old |  | Zone 1 - Road 30 - Potable Network - Potable Pipes 200 MM - Installation (old) | 123d | 2026-06-10 A | 2026-11-01 A | RSZone 1Road 30Potable NetworkA54660-old | 100% |  |  | Contract Price Original Scope [54525 SAR]; Labour [465.51 h]; Potable Pipes 200 MM [310.83] | 54,525 | 54,525 | RD30 |
| RSZone 1Road 30Potable NetworkA54680-old |  | Zone 1 - Road 30 - Potable Network - Potable Pipes 200 MM - Test (old) | 120d | 2026-06-14 A | 2026-11-01 A | RSZone 1Road 30Potable NetworkA54670-old | 100% |  |  | Contract Price Original Scope [7787.12 SAR]; Pump Operator [19.98 h]; Equipment Operator [19.98 h]; Labour [66.48 h]; Potable Pipes 200 MM [310.74] | 7,787.12 | 7,787.12 | RD30 |
| RSZone 1Road 30Potable NetworkA54690-old |  | Zone 1 - Road 30 - Potable Network - Potable Pipes 200 MM - Backfilling (old) | 119d | 2026-06-15 A | 2026-11-01 A | RSZone 1Road 30Potable NetworkA54680-old | 100% |  |  | Contract Price Original Scope [7787.12 SAR]; Excavator Operator [19.98 h]; Compactor Operator [19.98 h]; Dump Truck Operator [19.98 h]; Water Truck Operator [19.98 h]; Labour [66.48 h]; Potable Pipes 200 MM [310.74] | 7,787.12 | 7,787.12 | RD30 |
| RSZone 1Road 30Potable NetworkA54660 |  | Zone 1 - Road 30 - Potable Network - Potable Pipes 200 MM - Excavation | 1d | 2026-11-09 | 2026-11-09 | RSZone 1Road 30Potable NetworkA54660-old |  | 97.4d | 0d | Contract Price Original Scope [4.33 SAR]; Excavator Operator [0.02 h]; Dump Truck Operator [0.02 h]; Labour [0.04 h]; Potable Pipes 200 MM [0.17] | 4.33 |  | RD30 |
| RSZone 1Road 30Potable NetworkA54670 |  | Zone 1 - Road 30 - Potable Network - Potable Pipes 200 MM - Installation | 1d | 2026-11-10 | 2026-11-10 | RSZone 1Road 30Potable NetworkA54670-old, RSZone 1Road 30Potable NetworkA54660 |  | 97.4d | 0d | Contract Price Original Scope [30.31 SAR]; Labour [0.26 h]; Potable Pipes 200 MM [0.17] | 30.31 |  | RD30 |
| RSZone 1Road 30Potable NetworkA54680 |  | Zone 1 - Road 30 - Potable Network - Potable Pipes 200 MM - Test | 1d | 2026-11-11 | 2026-11-11 | RSZone 1Road 30Potable NetworkA54680-old, RSZone 1Road 30Potable NetworkA54670 |  | 97.4d | 0d | Contract Price Original Scope [6.49 SAR]; Pump Operator [0.02 h]; Equipment Operator [0.02 h]; Labour [0.06 h]; Potable Pipes 200 MM [0.26] | 6.49 |  | RD30 |
| RSZone 1Road 30Potable NetworkA54690 |  | Zone 1 - Road 30 - Potable Network - Potable Pipes 200 MM - Backfilling | 1d | 2026-11-12 | 2026-11-12 | RSZone 1Road 30Potable NetworkA54690-old, RSZone 1Road 30Potable NetworkA54680 |  | 97.4d | 97.2d | Contract Price Original Scope [6.49 SAR]; Excavator Operator [0.02 h]; Compactor Operator [0.02 h]; Dump Truck Operator [0.02 h]; Water Truck Operator [0.02 h]; Labour [0.06 h]; Potable Pipes 200 MM [0.26] | 6.49 |  | RD30 |

| ID | WBS | Activity | Duration | Start | Finish | Predecessors | Complete | Planned start | Planned finish | Total float | Free float | Resources | Cost | Actual cost | MODON |
| --- | --- | --- | --- | --- | --- | --- | --- | --- | --- | --- | --- | --- | --- | --- | --- |
|  | 6 | **Fittings** |  | 2025-11-12 | 2026-11-11 |  |  |  |  |  |  |  |  |  |  |
|  | 2 | **Elbows** |  | 2025-11-12 | 2025-11-13 |  |  |  |  |  |  |  |  |  |  |
| RSZone 1Road 30Potable NetworkA55620 |  | Zone 1 - Road 30 - Potable Network - Elbows - Installation | 1.9d | 2025-11-12 A | 2025-11-13 A | RSZone 1Road 29Potable NetworkA55790 | 100% |  |  |  |  | Contract Price Original Scope [3752.49 SAR]; Labour [32.04 h]; Fittings - Elbows (all sizes) [2] | 3,752.49 | 3,752.49 | RD30 |
|  | 3 | **Tees** |  | 2026-06-18 | 2026-11-11 |  |  |  |  |  |  |  |  |  |  |
| RSZone 1Road 30Potable NetworkA55630-old |  | Zone 1 - Road 30 - Potable Network - Tees - Installation (old) | 116d | 2026-06-18 A | 2026-11-01 A | RSZone 1Road 30Potable NetworkA55620 | 100% | 2026-06-18 | 2026-11-02 |  |  | Contract Price Original Scope [17987.6 SAR]; Labour [153.57 h]; Fittings - Tees (all sizes) [6] | 17,987.61 | 17,987.61 | RD30 |
| RSZone 1Road 30Potable NetworkA55630 |  | Zone 1 - Road 30 - Potable Network - Tees - Installation | 2.14d | 2026-11-09 | 2026-11-11 | RSZone 1Road 30Potable NetworkA55630-old |  |  |  | 99.26d | 99.06d | Contract Price Original Scope [45004 SAR]; Labour [384.22 h]; Fittings - Tees (all sizes) [15] | 45,004.03 |  | RD30 |
|  | 5 | **End Cap** |  | 2025-11-16 | 2025-11-17 |  |  |  |  |  |  |  |  |  |  |
| RSZone 1Road 30Potable NetworkA55640 |  | Zone 1 - Road 30 - Potable Network - End Cap - Installation | 2d | 2025-11-16 A | 2025-11-17 A | RSZone 1Road 30Potable NetworkA55620 | 100% |  |  |  |  | Contract Price Original Scope [8771.7 SAR]; Labour [74.89 h]; Fittings - End Caps (all sizes) [12] | 8,771.7 | 8,771.7 | RD30 |
|  | 4 | **Reducer** |  | 2026-11-09 | 2026-11-11 |  |  |  |  |  |  |  |  |  |  |
| RSZone 1Road 30Potable NetworkA55650 |  | Zone 1 - Road 30 - Potable Network - Reducer - Installation | 3d | 2026-11-09 | 2026-11-11 | RSZone 1Road 30Potable NetworkA55640 |  |  |  | 98.4d | 98.2d | Labour; Fittings - Reducers (all sizes) [3] |  |  | RD30 |
|  | 2 | **Buried Valves** |  | 2026-06-24 | 2026-11-18 |  |  |  |  |  |  |  |  |  |  |
| RSZone 1Road 30Potable NetworkA56220-old |  | Zone 1 - Road 30 - Potable Network - Buried Valves - Excavation (old) | 111d | 2026-06-24 A | 2026-11-01 A | RSZone 1Road 30Potable NetworkA55800 | 100% |  |  |  |  | Contract Price Original Scope [1602.34 SAR]; Excavator Operator [23.08 h]; Dump Truck Operator [23.08 h]; Labour [13.68 h]; Buried Valves [10] | 1,602.34 | 1,602.34 | RD30 |
| RSZone 1Road 30Potable NetworkA56230-old |  | Zone 1 - Road 30 - Potable Network - Buried Valves - Installation (old) | 110d | 2026-06-25 A | 2026-11-01 A | RSZone 1Road 30Potable NetworkA56220-old | 100% | 2026-06-25 | 2026-11-02 |  |  | Contract Price Original Scope [20830.5 SAR]; Labour [177.84 h]; Buried Valves [10] | 20,830.45 | 20,830.45 | RD30 |
| RSZone 1Road 30Potable NetworkA56250-old |  | Zone 1 - Road 30 - Potable Network - Buried Valves - Test (old) | 107d | 2026-06-29 A | 2026-11-01 A | RSZone 1Road 30Potable NetworkA56230-old | 100% |  |  |  |  | Contract Price Original Scope [3207 SAR]; Pump Operator [7.7 h]; Equipment Operator [7.7 h]; Labour [27.38 h]; Buried Valves [5] | 3,207 | 3,207 | RD30 |
| RSZone 1Road 30Potable NetworkA56220 |  | Zone 1 - Road 30 - Potable Network - Buried Valves - Excavation | 1d | 2026-11-09 | 2026-11-09 | RSZone 1Road 30Potable NetworkA56220-old |  |  |  | 93.17d | 0d | Contract Price Original Scope [480.12 SAR]; Excavator Operator [6.92 h]; Dump Truck Operator [6.92 h]; Labour [4.1 h]; Buried Valves [3] | 480.12 |  | RD30 |
| RSZone 1Road 30Potable NetworkA56230 |  | Zone 1 - Road 30 - Potable Network - Buried Valves - Installation | 1d | 2026-11-10 | 2026-11-10 | RSZone 1Road 30Potable NetworkA56230-old, RSZone 1Road 30Potable NetworkA56220 |  |  |  | 93.17d | 0d | Contract Price Original Scope [6241.62 SAR]; Labour [53.29 h]; Buried Valves [3] | 6,241.62 |  | RD30 |
| RSZone 1Road 30Potable NetworkA56250 |  | Zone 1 - Road 30 - Potable Network - Buried Valves - Test | 1.23d | 2026-11-11 | 2026-11-12 | RSZone 1Road 30Potable NetworkA56250-old, RSZone 1Road 30Potable NetworkA56230 |  |  |  | 93.17d | 0d | Contract Price Original Scope [5122.87 SAR]; Pump Operator [12.3 h]; Equipment Operator [12.3 h]; Labour [43.74 h]; Buried Valves [8] | 5,122.87 |  | RD30 |
| RSZone 1Road 30Potable NetworkA56240 |  | Zone 1 - Road 30 - Potable Network - Buried Valves - Surface Box | 3d | 2026-11-12 | 2026-11-16 | RSZone 1Road 30Potable NetworkA56250, RSZone 1Road 30Potable NetworkA56220, RSZone 1Road 30Potable NetworkA56230 |  |  |  | 93.17d | 0d | Labour; Buried Valves [13] |  |  | RD30 |
| RSZone 1Road 30Potable NetworkA56260 |  | Zone 1 - Road 30 - Potable Network - Buried Valves - Backfilling | 2d | 2026-11-16 | 2026-11-18 | RSZone 1Road 30Potable NetworkA56240 |  |  |  | 93.17d | 92.97d | Contract Price Original Scope [4164.93 SAR]; Excavator Operator [20 h]; Compactor Operator [20 h]; Dump Truck Operator [20 h]; Water Truck Operator [20 h]; Labour [35.56 h]; Buried Valves [13] | 4,164.93 |  | RD30 |
|  | 3 | **Sand Bedding** |  | 2025-11-24 | 2025-11-25 |  |  |  |  |  |  |  |  |  |  |
| RSZone 1Road 30Potable NetworkA55800 |  | Zone 1 - Road 30 - Potable Network - Sand Bedding - Bedding | 2d | 2025-11-24 A | 2025-11-25 A | RSZone 1Road 30Potable NetworkA55640 | 100% |  |  |  |  | Contract Price Original Scope [5779.83 SAR]; Compactor Operator [20 h]; Equipment Operator [20 h]; Water Truck Operator [20 h]; Labour [49.35 h]; Sand Bedding [311] | 5,779.83 | 5,779.83 | RD30 |
|  | 7 | **FIRE HYDRANT** |  | 2025-12-03 | 2026-11-16 |  |  |  |  |  |  |  |  |  |  |
| RSZone 1Road 30Potable NetworkA57900 |  | Zone 1 - Road 30 - Potable Network - FIRE HYDRANT - Excavation | 4d | 2025-12-03 A | 2025-12-07 A | RSZone 1Road 30Potable NetworkA55800 | 100% |  |  |  |  | Contract Price Original Scope [1387.28 SAR]; Excavator Operator [30 h]; Dump Truck Operator [30 h]; Labour [11.84 h]; Fire Hydrant [1] | 1,387.28 | 1,387.28 | RD30 |
| RSZone 1Road 30Potable NetworkA57910 |  | Zone 1 - Road 30 - Potable Network - FIRE HYDRANT - Buried Gate Valve Installation | 3d | 2025-12-08 A | 2025-12-10 A | RSZone 1Road 30Potable NetworkA57900 | 100% |  |  |  |  | Labour; Fire Hydrant [1] |  |  | RD30 |
| RSZone 1Road 30Potable NetworkA57920 |  | Zone 1 - Road 30 - Potable Network - FIRE HYDRANT - Fire Hydrant Installation | 3d | 2025-12-11 A | 2025-12-14 A | RSZone 1Road 30Potable NetworkA57910 | 100% | 2025-12-11 | 2025-12-15 |  |  | Contract Price Original Scope [10127.2 SAR]; Labour [86.46 h]; Fire Hydrant [1] | 10,127.16 | 10,127.16 | RD30 |
| RSZone 1Road 30Potable NetworkA57930 |  | Zone 1 - Road 30 - Potable Network - FIRE HYDRANT - Surface Box | 3d | 2026-11-09 | 2026-11-11 | RSZone 1Road 30Potable NetworkA57920 |  |  |  | 94.4d | 0d | Labour; Fire Hydrant [1] |  |  | RD30 |
| RSZone 1Road 30Potable NetworkA57940 |  | Zone 1 - Road 30 - Potable Network - FIRE HYDRANT - Test | 2d | 2026-11-12 | 2026-11-14 | RSZone 1Road 30Potable NetworkA57930 |  |  |  | 94.4d | 0d | Contract Price Original Scope [971.1 SAR]; Pump Operator [20 h]; Equipment Operator [20 h]; Labour [8.29 h]; Fire Hydrant [1] | 971.1 |  | RD30 |
| RSZone 1Road 30Potable NetworkA57950 |  | Zone 1 - Road 30 - Potable Network - FIRE HYDRANT - Backfilling | 2d | 2026-11-15 | 2026-11-16 | RSZone 1Road 30Potable NetworkA57940 |  |  |  | 94.4d | 94.2d | Contract Price Original Scope [1387.28 SAR]; Excavator Operator [20 h]; Compactor Operator [20 h]; Dump Truck Operator [20 h]; Water Truck Operator [20 h]; Labour [11.84 h]; Fire Hydrant [1] | 1,387.28 |  | RD30 |

| ID | WBS | Activity | Duration | Start | Finish | Predecessors | Complete | Planned start | Planned finish | Total float | Free float | Resources | Cost | Actual cost | MODON |
| --- | --- | --- | --- | --- | --- | --- | --- | --- | --- | --- | --- | --- | --- | --- | --- |
|  | 4 | **Thrust Block** |  | 2026-07-23 | 2026-07-24 |  |  |  |  |  |  |  |  |  |  |
| RSZone 1Road 30Potable NetworkA90210 |  | Zone 1 - Road 30 - Potable Network - Thrust Block - Thrust Block | 0.9d | 2026-07-23 A | 2026-07-24 A | RSZone 1Road 30Potable NetworkA57920 | 100% | 2026-07-23 | 2026-07-23 |  |  | Contract Price Original Scope [20240 SAR]; Crane Operator [12 h]; Pump Operator [12 h]; Equipment Operator [12 h]; Labour [172.8 h]; Thrust Blocks [6] | 20,240.04 | 20,240.04 | RD30 |
|  | 5 | **Lateral Irrigation Network** |  | 2025-07-16 | 2026-11-18 |  |  |  |  |  |  |  |  |  |  |
|  | 6 | **HDPE Pipes** |  | 2025-07-16 | 2025-07-31 |  |  |  |  |  |  |  |  |  |  |
|  | 2 | **HDPE Pipes 125 MM** |  | 2025-07-16 | 2025-07-31 |  |  |  |  |  |  |  |  |  |  |
| RSZone 1Road 30Irrigation NetworkA26190 |  | Zone 1 - Road 30 - Lateral Irrigation Network - HDPE Pipes 125 MM - Excavation | 6d | 2025-07-16 A | 2025-07-22 A | RSZone 1Road 29Irrigation NetworkA25770 | 100% |  |  |  |  | Contract Price Original Scope [5510.91 SAR]; Excavator Operator [30 h]; Dump Truck Operator [30 h]; Labour [47.05 h]; HDPE Pipes 125 MM [397] | 5,510.91 | 5,510.91 | RD30 |
| RSZone 1Road 30Irrigation NetworkA26200 |  | Zone 1 - Road 30 - Lateral Irrigation Network - HDPE Pipes 125 MM - Pipe Installation | 5d | 2025-07-23 A | 2025-07-28 A | RSZone 1Road 30Irrigation NetworkA26190 | 100% |  |  |  |  | Contract Price Original Scope [38576.4 SAR]; Excavator Operator [40 h]; Crane Operator [40 h]; Equipment Operator [40 h]; Labour [329.35 h]; HDPE Pipes 125 MM [397] | 38,576.37 | 38,576.37 | RD30 |
| RSZone 1Road 30Irrigation NetworkA26210 |  | Zone 1 - Road 30 - Lateral Irrigation Network - HDPE Pipes 125 MM - Test | 2d | 2025-07-29 A | 2025-07-30 A | RSZone 1Road 30Irrigation NetworkA26200 | 100% |  |  |  |  | Contract Price Original Scope [5510.91 SAR]; Pump Operator [20 h]; Equipment Operator [20 h]; Labour [47.05 h]; HDPE Pipes 125 MM [397] | 5,510.91 | 5,510.91 | RD30 |
| RSZone 1Road 30Irrigation NetworkA26220 |  | Zone 1 - Road 30 - Lateral Irrigation Network - HDPE Pipes 125 MM - Backfilling | 1.9d | 2025-07-30 A | 2025-07-31 A | RSZone 1Road 30Irrigation NetworkA26210 | 100% |  |  |  |  | Contract Price Original Scope [5510.91 SAR]; Excavator Operator [20 h]; Compactor Operator [20 h]; Dump Truck Operator [20 h]; Water Truck Operator [20 h]; Labour [47.05 h]; HDPE Pipes 125 MM [397] | 5,510.91 | 5,510.91 | RD30 |
|  | 1 | **HDPE Fitting** |  | 2025-07-20 | 2026-11-10 |  |  |  |  |  |  |  |  |  |  |
|  | 1 | **Elbows** |  | 2025-07-20 | 2025-07-22 |  |  |  |  |  |  |  |  |  |  |
| RSZone 1Road 30Irrigation NetworkA26430 |  | Zone 1 - Road 30 - Lateral Irrigation Network - Elbows - Installation | 3d | 2025-07-20 A | 2025-07-22 A | RSZone 1Road 30Irrigation NetworkA26220 | 100% |  |  |  |  | Contract Price Original Scope [7796.75 SAR]; Labour [66.56 h]; Fittings - Elbows (all sizes) [6] | 7,796.75 | 7,796.75 | RD30 |
|  | 2 | **Tees** |  | 2026-09-21 | 2026-11-10 |  |  |  |  |  |  |  |  |  |  |
| RSZone 1Road 30Irrigation NetworkA86160- |  | Zone 1 - Road 30 - Lateral Irrigation Network - Tees - Installation (old) | 35d | 2026-09-21 A | 2026-11-01 A | RSZone 1Road 30Irrigation NetworkA26430 | 100% |  |  |  |  | Contract Price Original Scope [9216.36 SAR]; Labour [78.68 h]; Fittings - Tees (all sizes) [6] | 9,216.36 | 9,216.36 | RD30 |
| RSZone 1Road 30Irrigation NetworkA86160- |  | Zone 1 - Road 30 - Lateral Irrigation Network - Tees - Installation (old) | 1.2d | 2026-11-09 | 2026-11-10 | RSZone 1Road 30Irrigation NetworkA86160- |  |  |  | 100.2d | 99.56d | Contract Price Original Scope [6144.24 SAR]; Labour [52.46 h]; Fittings - Tees (all sizes) [4] | 6,144.24 |  | RD30 |
|  | 4 | **Reducer** |  | 2026-06-04 | 2026-06-05 |  |  |  |  |  |  |  |  |  |  |
| RSZone 1Road 30Irrigation NetworkA86180 |  | Zone 1 - Road 30 - Lateral Irrigation Network - Reducer - Installation | 0.9d | 2026-06-04 A | 2026-06-05 A | RSZone 1Road 30Irrigation NetworkA26430 | 100% | 2026-06-04 | 2026-06-04 |  |  | Contract Price Original Scope [8239.82 SAR]; Labour [70.35 h]; Fittings - Reducers (Connectors) (all sizes) [6] | 8,239.82 | 8,239.82 | RD30 |
|  | 11 | **Valves** |  | 2026-05-10 | 2026-11-18 |  |  |  |  |  |  |  |  |  |  |
|  | 1 | **Buried Valves** |  | 2026-05-10 | 2026-11-18 |  |  |  |  |  |  |  |  |  |  |
| RSZone 1Road 30Irrigation NetworkA25980- |  | Zone 1 - Road 30 - Lateral Irrigation Network - Buried Valves - Excavation (old) | 150d | 2026-05-10 A | 2026-11-01 A | RSZone 1Road 30Irrigation NetworkA86180 | 100% |  |  |  |  | Contract Price Original Scope [605.31 SAR]; Excavator Operator [27 h]; Dump Truck Operator [27 h]; Labour [5.17 h]; Buried Valves [9] | 605.31 | 605.31 | RD30 |
| RSZone 1Road 30Irrigation NetworkA26560- |  | Zone 1 - Road 30 - Lateral Irrigation Network - Buried Valves - Installation (old) | 149d | 2026-05-11 A | 2026-11-01 A | RSZone 1Road 30Irrigation NetworkA25980- | 100% |  |  |  |  | Contract Price Original Scope [7869.03 SAR]; Labour [67.18 h]; Buried Valves [9] | 7,869.03 | 7,869.03 | RD30 |
| RSZone 1Road 30Irrigation NetworkA25980- |  | Zone 1 - Road 30 - Lateral Irrigation Network - Buried Valves - Excavation (old) | 1d | 2026-11-09 | 2026-11-09 | RSZone 1Road 30Irrigation NetworkA25980- |  |  |  | 92.4d | 0d | Contract Price Original Scope [67.26 SAR]; Excavator Operator [3 h]; Dump Truck Operator [3 h]; Labour [0.57 h]; Buried Valves [1] | 67.26 |  | RD30 |
| RSZone 1Road 30Irrigation NetworkA26560- |  | Zone 1 - Road 30 - Lateral Irrigation Network - Buried Valves - Installation (old) | 1d | 2026-11-10 | 2026-11-10 | RSZone 1Road 30Irrigation NetworkA26560-, RSZone 1Road 30Irrigation NetworkA25980- |  |  |  | 92.4d | 0d | Contract Price Original Scope [874.34 SAR]; Labour [7.46 h]; Buried Valves [1] | 874.34 |  | RD30 |
| RSZone 1Road 30Irrigation NetworkA26570 |  | Zone 1 - Road 30 - Lateral Irrigation Network - Buried Valves - Surface Box | 3d | 2026-11-11 | 2026-11-14 | RSZone 1Road 30Irrigation NetworkA26560-, RSZone 1Road 30Irrigation NetworkA25980- |  |  |  | 92.4d | 0d | Labour; Buried Valves [10] |  |  | RD30 |
| RSZone 1Road 30Irrigation NetworkA26580 |  | Zone 1 - Road 30 - Lateral Irrigation Network - Buried Valves - Test | 2d | 2026-11-15 | 2026-11-16 | RSZone 1Road 30Irrigation NetworkA26570 |  |  |  | 92.4d | 0d | Contract Price Original Scope [2690.26 SAR]; Pump Operator [20 h]; Equipment Operator [20 h]; Labour [22.97 h]; Buried Valves [10] | 2,690.26 |  | RD30 |
| RSZone 1Road 30Irrigation NetworkA26590 |  | Zone 1 - Road 30 - Lateral Irrigation Network - Buried Valves - Backfilling | 2d | 2026-11-17 | 2026-11-18 | RSZone 1Road 30Irrigation NetworkA26580 |  |  |  | 92.4d | 91.76d | Contract Price Original Scope [1345.13 SAR]; Excavator Operator [20 h]; Compactor Operator [20 h]; Dump Truck Operator [20 h]; Water Truck Operator [20 h]; Labour [11.48 h]; Buried Valves [10] | 1,345.13 |  | RD30 |

| ID | WBS | Activity | Duration | Start | Finish | Predecessors | Complete | Remaining | Planned start | Planned finish | Total float | Free float | Resources | Cost | Actual cost | MODON |
| --- | --- | --- | --- | --- | --- | --- | --- | --- | --- | --- | --- | --- | --- | --- | --- | --- |
|  | 3 | **Bedding** |  | 2025-07-20 | 2025-07-22 |  |  |  |  |  |  |  |  |  |  |  |
| RSZone 1Road 30Irrigation NetworkA27120 |  | Zone 1 - Road 30 - Lateral Irrigation Network - Bedding - Bedding | 3d | 2025-07-20 A | 2025-07-22 A | RSZone 1Road 30Irrigation NetworkA86180 | 100% |  |  |  |  |  | Contract Price Original Scope [10223.9 SAR]; Compactor Operator [20 h]; Equipment Operator [20 h]; Water Truck Operator [20 h]; Labour [87.29 h]; Bedding [397] | 10,223.92 | 10,223.92 | RD30 |
|  | 4 | **Thrust Block** |  | 2026-05-12 | 2026-11-09 |  |  |  |  |  |  |  |  |  |  |  |
| RSZone 1Road 30Irrigation NetworkA27130- |  | Zone 1 - Road 30 - Lateral Irrigation Network - Thrust Block - Thrust Block (old) | 148d | 2026-05-12 A | 2026-11-01 A | RSZone 1Road 30Irrigation NetworkA27120 | 100% |  |  |  |  |  | Contract Price Original Scope [12261.1 SAR]; Crane Operator [9 h]; Pump Operator [9 h]; Equipment Operator [9 h]; Labour [104.68 h]; Thrust Blocks [12] | 12,261.12 | 12,261.12 | RD30 |
| RSZone 1Road 30Irrigation NetworkA27130- |  | Zone 1 - Road 30 - Lateral Irrigation Network - Thrust Block - Thrust Block (old) | 1d | 2026-11-09 | 2026-11-09 | RSZone 1Road 30Irrigation NetworkA27130- |  |  |  |  | 100.4d | 99.76d | Contract Price Original Scope [4087.04 SAR]; Crane Operator [3 h]; Pump Operator [3 h]; Equipment Operator [3 h]; Labour [34.89 h]; Thrust Blocks [4] | 4,087.04 |  | RD30 |
|  | 12 | **Telecom Network** |  | 2025-12-08 | 2026-11-19 |  |  |  |  |  |  |  |  |  |  |  |
|  | 1 | **Telecom Pipe** |  | 2026-02-15 | 2026-11-19 |  |  |  |  |  |  |  |  |  |  |  |
| RSZone 1Road 30Telecom NetworkA61920 |  | Zone 1 - Road 30 - Telecom Network - Telecom Pipe - Excavation | 4.9d | 2026-02-15 A | 2026-02-19 A | RSZone 1Road 09Telecom NetworkA63410, RSZone 1Road 29Telecom NetworkA68600-old | 100% |  |  |  |  |  | Contract Price Original Scope [22951.5 SAR]; Excavator Operator [30 h]; Dump Truck Operator [30 h]; Labour [195.95 h]; Telecom Pipe [1065] | 22,951.46 | 22,951.46 | RD30 |
| RSZone 1Road 30Telecom NetworkA61930-old |  | Zone 1 - Road 30 - Telecom Network - Telecom Pipe - Concrete Pouring (old) | 96d | 2026-07-12 A | 2026-11-01 A | RSZone 1Road 30Telecom NetworkA61920 | 100% |  |  |  |  |  | Contract Price Original Scope [118023 SAR]; Crane Operator [9.55 h]; Pump Operator [9.55 h]; Equipment Operator [9.55 h]; Labour [1007.62 h]; Telecom Pipe [782.37] | 118,023.46 | 118,023.46 | RD30 |
| RSZone 1Road 30Telecom NetworkA61940 |  | Zone 1 - Road 30 - Telecom Network - Telecom Pipe - Test | 2d | 2026-11-05 A | 2026-11-17 | RSZone 1Road 30Telecom NetworkA61930 FF, RSZone 1Road 30Telecom NetworkA61930-old | 28% | 1.43d | 2026-11-11 | 2026-11-12 | 96.4d | 0d | Contract Price Original Scope [22951.5 SAR]; Pump Operator [20 h]; Equipment Operator [20 h]; Labour [195.95 h]; Telecom Pipe [1065] | 22,951.46 | 6,522.04 | RD30 |
| RSZone 1Road 30Telecom NetworkA61930 |  | Zone 1 - Road 30 - Telecom Network - Telecom Pipe - Concrete Pouring | 1d | 2026-11-17 | 2026-11-17 | RSZone 1Road 30Telecom NetworkA61930-old, RSZone 1Road 29Telecom NetworkA68600 |  |  |  |  | 96.4d | 0d | Contract Price Original Scope [42636.8 SAR]; Crane Operator [3.45 h]; Pump Operator [3.45 h]; Equipment Operator [3.45 h]; Labour [364.01 h]; Telecom Pipe [282.63] | 42,636.75 |  | RD30 |
| RSZone 1Road 30Telecom NetworkA61950 |  | Zone 1 - Road 30 - Telecom Network - Telecom Pipe - Backfilling | 2d | 2026-11-18 | 2026-11-19 | RSZone 1Road 30Telecom NetworkA61940 |  |  |  |  | 96.4d | 96d | Contract Price Original Scope [22951.5 SAR]; Excavator Operator [20 h]; Compactor Operator [20 h]; Dump Truck Operator [20 h]; Water Truck Operator [20 h]; Labour [195.95 h]; Telecom Pipe [1065] | 22,951.46 |  | RD30 |
|  | 12 | **Telecom Duct** |  | 2025-12-08 | 2026-11-12 |  |  |  |  |  |  |  |  |  |  |  |
| RSZone 1Road 30Telecom NetworkA66760 |  | Zone 1 - Road 30 - Telecom Network - Telecom Duct - Excavation | 3.9d | 2025-12-08 A | 2025-12-11 A | RSZone 1Road 30Telecom NetworkA61920 | 100% |  |  |  |  |  | Contract Price Original Scope [1806.8 SAR]; Excavator Operator [30 h]; Dump Truck Operator [30 h]; Labour [15.43 h]; Telecom Duct (Road Crossing) [83] | 1,806.8 | 1,806.8 | RD30 |
| RSZone 1Road 30Telecom NetworkA66770 |  | Zone 1 - Road 30 - Telecom Network - Telecom Duct - Concrete Pouring | 2d | 2025-12-14 A | 2025-12-15 A | RSZone 1Road 30Telecom NetworkA66760 | 100% |  |  |  |  |  | Contract Price Original Scope [25295.3 SAR]; Crane Operator [14 h]; Pump Operator [14 h]; Equipment Operator [14 h]; Labour [215.96 h]; Telecom Duct (Road Crossing) [83] | 25,295.26 | 25,295.26 | RD30 |
| RSZone 1Road 30Telecom NetworkA66780 |  | Zone 1 - Road 30 - Telecom Network - Telecom Duct - Test | 2d | 2026-11-05 A | 2026-11-10 | RSZone 1Road 30Telecom NetworkA66770 | 27% | 1.46d | 2026-11-02 | 2026-11-03 | 102.94d | 0d | Contract Price Original Scope [3613.61 SAR]; Pump Operator [20 h]; Equipment Operator [20 h]; Labour [30.85 h]; Telecom Duct (Road Crossing) [83] | 3,613.61 | 978.69 | RD30 |
| RSZone 1Road 30Telecom NetworkA66790 |  | Zone 1 - Road 30 - Telecom Network - Telecom Duct - Backfilling | 2d | 2026-11-10 | 2026-11-12 | RSZone 1Road 30Telecom NetworkA66780 |  |  |  |  | 102.94d | 102.54d | Contract Price Original Scope [5420.41 SAR]; Excavator Operator [20 h]; Compactor Operator [20 h]; Dump Truck Operator [20 h]; Water Truck Operator [20 h]; Labour [46.28 h]; Telecom Duct (Road Crossing) [83] | 5,420.41 |  | RD30 |
|  | 2 | **TELECOM MANHOLE** |  | 2026-07-20 | 2026-11-17 |  |  |  |  |  |  |  |  |  |  |  |
| RSZone 1Road 30Telecom NetworkA68720-old |  | Zone 1 - Road 30 - Telecom Network - TELECOM MANHOLE - Manhole Installation (old) | 89d | 2026-07-20 A | 2026-11-01 A | RSZone 1Road 29Telecom NetworkA68600-old | 100% |  |  |  |  |  | Contract Price Original Scope [156834 SAR]; Crane Operator [13.3 h]; Boom Truck Operator [13.3 h]; Equipment Operator [13.3 h]; Labour [1338.97 h]; Telecom Manhole [10.45] | 156,834.33 | 156,834.33 | RD30 |
| RSZone 1Road 30Telecom NetworkA68720 |  | Zone 1 - Road 30 - Telecom Network - TELECOM MANHOLE - Manhole Installation | 1d | 2026-11-17 | 2026-11-17 | RSZone 1Road 30Telecom NetworkA68720-old, RSZone 1Road 29Telecom NetworkA68600 |  |  |  |  | 76.4d | 0d | Contract Price Original Scope [8254.44 SAR]; Crane Operator [0.7 h]; Boom Truck Operator [0.7 h]; Equipment Operator [0.7 h]; Labour [70.47 h]; Telecom Manhole [0.55] | 8,254.44 |  | RD30 |
|  | 17 | **Road 31** |  | 2025-09-24 | 2027-03-17 |  |  |  |  |  |  |  |  |  |  |  |
|  | 2 | **Storm Network** |  | 2025-09-24 | 2027-03-17 |  |  |  |  |  |  |  |  |  |  |  |
|  | 1 | **Gullies & Catchbasin Pipes** |  | 2026-09-27 | 2026-12-10 |  |  |  |  |  |  |  |  |  |  |  |
| RSZone 1Road 31Storm NetworkA88220-old |  | Zone 1 - Road 31 - Storm Network - Gullies & Catchbasin Pipes - Excavation (old) | 31d | 2026-09-27 A | 2026-11-01 A | RSZone 1Road 30Storm NetworkA47960-old | 100% |  |  |  |  |  | Contract Price Original Scope [10696.8 SAR]; Excavator Operator [22.25 h]; Dump Truck Operator [22.25 h]; Labour [91.32 h]; Gullies & Catchbasin Pipes (300 mm) [267] | 10,696.77 | 10,696.77 | RD31 |
| RSZone 1Road 31Storm NetworkA88230-old |  | Zone 1 - Road 31 - Storm Network - Gullies & Catchbasin Pipes - Bedding (old) | 30d | 2026-09-28 A | 2026-11-01 A | RSZone 1Road 31Storm NetworkA88220-old | 100% |  |  |  |  |  | Contract Price Original Scope [30478.6 SAR]; Compactor Operator [14.06 h]; Equipment Operator [14.06 h]; Water Truck Operator [14.06 h]; Labour [260.21 h]; Gullies & Catchbasin Pipes - Bedding [253] | 30,478.58 | 30,478.58 | RD31 |
| RSZone 1Road 31Storm NetworkA88240-old |  | Zone 1 - Road 31 - Storm Network - Gullies & Catchbasin Pipes - Pipe Installation (old) | 28d | 2026-09-30 A | 2026-11-01 A | RSZone 1Road 31Storm NetworkA88230-old | 100% |  |  |  |  |  | Contract Price Original Scope [70940.1 SAR]; Excavator Operator [28.11 h]; Crane Operator [28.11 h]; Equipment Operator [28.11 h]; Labour [605.65 h]; Gullies & Catchbasin Pipes (300 mm) [252.96] | 70,940.05 | 70,940.05 | RD31 |
| RSZone 1Road 31Storm NetworkA88220 |  | Zone 1 - Road 31 - Storm Network - Gullies & Catchbasin Pipes - Excavation | 1.29d | 2026-12-01 | 2026-12-02 | RSZone 1Road 31Storm NetworkA88220-old, RSZone 1Road 30Storm NetworkA47960 |  |  |  |  | 94.71d | 0d | Contract Price Original Scope [3725.84 SAR]; Excavator Operator [7.75 h]; Dump Truck Operator [7.75 h]; Labour [31.81 h]; Gullies & Catchbasin Pipes (300 mm) [93] | 3,725.84 |  | RD31 |
| RSZone 1Road 31Storm NetworkA88230 |  | Zone 1 - Road 31 - Storm Network - Gullies & Catchbasin Pipes - Bedding | 1d | 2026-12-02 | 2026-12-03 | RSZone 1Road 31Storm NetworkA88230-old, RSZone 1Road 31Storm NetworkA88220 |  |  |  |  | 94.71d | 0d | Contract Price Original Scope [12890.1 SAR]; Compactor Operator [5.94 h]; Equipment Operator [5.94 h]; Water Truck Operator [5.94 h]; Labour [110.05 h]; Gullies & Catchbasin Pipes - Bedding [107] | 12,890.15 |  | RD31 |
| RSZone 1Road 31Storm NetworkA88240 |  | Zone 1 - Road 31 - Storm Network - Gullies & Catchbasin Pipes - Pipe Installation | 1.49d | 2026-12-03 | 2026-12-06 | RSZone 1Road 31Storm NetworkA88240-old, RSZone 1Road 31Storm NetworkA88230 |  |  |  |  | 94.71d | 0d | Contract Price Original Scope [30018.3 SAR]; Excavator Operator [11.89 h]; Crane Operator [11.89 h]; Equipment Operator [11.89 h]; Labour [256.28 h]; Gullies & Catchbasin Pipes (300 mm) [107.04] | 30,018.28 |  | RD31 |
| RSZone 1Road 31Storm NetworkA88250 |  | Zone 1 - Road 31 - Storm Network - Gullies & Catchbasin Pipes - Test | 2d | 2026-12-06 | 2026-12-08 | RSZone 1Road 31Storm NetworkA88240, RSZone 1Road 31Storm NetworkA88220, RSZone 1Road 31Storm NetworkA88230 |  |  |  |  | 98.25d | 0d | Contract Price Original Scope [14422.6 SAR]; Pump Operator [20 h]; Equipment Operator [20 h]; Labour [123.13 h]; Gullies & Catchbasin Pipes (300 mm) [360] | 14,422.62 |  | RD31 |
| RSZone 1Road 31Storm NetworkA88260 |  | Zone 1 - Road 31 - Storm Network - Gullies & Catchbasin Pipes - Backfilling | 2d | 2026-12-08 | 2026-12-10 | RSZone 1Road 31Storm NetworkA88250 |  |  |  |  | 98.25d | 83.85d | Contract Price Original Scope [14422.6 SAR]; Excavator Operator [20 h]; Compactor Operator [20 h]; Dump Truck Operator [20 h]; Water Truck Operator [20 h]; Labour [123.13 h]; Gullies & Catchbasin Pipes (300 mm) [360] | 14,422.62 |  | RD31 |

| ID | WBS | Activity | Duration | Start | Finish | Predecessors | Complete | Planned start | Planned finish | Total float | Free float | Resources | Cost | Actual cost | MODON |
| --- | --- | --- | --- | --- | --- | --- | --- | --- | --- | --- | --- | --- | --- | --- | --- |
|  | 5 | **Catch Basins** |  | 2025-10-01 | 2026-11-16 |  |  |  |  |  |  |  |  |  |  |
| RSZone 1Road 31Storm NetworkA43940 |  | Zone 1 - Road 31 - Storm Network - Catch Basins - Excavation | 5d | 2025-10-01 A | 2025-10-06 A | RSZone 1Road 30Storm NetworkA47980 | 100% |  |  |  |  | Contract Price Original Scope [27549.9 SAR]; Excavator Operator [30 h]; Dump Truck Operator [30 h]; Labour [235.21 h]; Catch Basins [8] | 27,549.88 | 27,549.88 | RD31 |
| RSZone 1Road 31Storm NetworkA43950 |  | Zone 1 - Road 31 - Storm Network - Catch Basins - Installation | 2d | 2025-10-07 A | 2025-10-08 A | RSZone 1Road 31Storm NetworkA43940 | 100% |  |  |  |  | Contract Price Original Scope [110200 SAR]; Crane Operator [7 h]; Boom Truck Operator [7 h]; Equipment Operator [7 h]; Labour [940.83 h]; Catch Basins [8] | 110,199.54 | 110,199.54 | RD31 |
| RSZone 1Road 31Storm NetworkA43970 |  | Zone 1 - Road 31 - Storm Network - Catch Basins - Inner Isolation | 2d | 2026-11-09 | 2026-11-10 | RSZone 1Road 31Storm NetworkA43950 |  |  |  | 118.4d | 0d | Contract Price Original Scope [18366.6 SAR]; Equipment Operator [20 h]; Labour [156.8 h]; Catch Basins [8] | 18,366.59 |  | RD31 |
| RSZone 1Road 31Storm NetworkA43960 |  | Zone 1 - Road 31 - Storm Network - Catch Basins - D.I | 3d | 2026-11-11 | 2026-11-14 | RSZone 1Road 31Storm NetworkA43970 |  |  |  | 118.4d | 0d | Contract Price Original Scope [18366.6 SAR]; Crane Operator [7 h]; Boom Truck Operator [7 h]; Equipment Operator [7 h]; Labour [156.8 h]; Catch Basins [8] | 18,366.59 |  | RD31 |
| RSZone 1Road 31Storm NetworkA43980 |  | Zone 1 - Road 31 - Storm Network - Catch Basins - Backfilling | 2d | 2026-11-15 | 2026-11-16 | RSZone 1Road 31Storm NetworkA43960 |  |  |  | 118.4d | 104d | Contract Price Original Scope [9183.29 SAR]; Excavator Operator [20 h]; Compactor Operator [20 h]; Dump Truck Operator [20 h]; Water Truck Operator [20 h]; Labour [78.4 h]; Catch Basins [8] | 9,183.29 |  | RD31 |
|  | 4 | **Gully outfalls** |  | 2025-09-24 | 2026-11-16 |  |  |  |  |  |  |  |  |  |  |
| RSZone 1Road 31Storm NetworkA42690 |  | Zone 1 - Road 31 - Storm Network - Gully outfalls - Excavation | 6d | 2025-09-24 A | 2025-09-30 A | RSZone 1Road 31Storm NetworkA43950 | 100% |  |  |  |  | Contract Price Original Scope [16074 SAR]; Excavator Operator [30 h]; Dump Truck Operator [30 h]; Labour [137.23 h]; Gully outfalls [16] | 16,074.05 | 16,074.05 | RD31 |
| RSZone 1Road 31Storm NetworkA42700 |  | Zone 1 - Road 31 - Storm Network - Gully outfalls - Installation | 1.9d | 2025-10-01 A | 2025-10-02 A | RSZone 1Road 31Storm NetworkA42690 | 100% |  |  |  |  | Contract Price Original Scope [64296.2 SAR]; Crane Operator [7 h]; Equipment Operator [7 h]; Labour [548.93 h]; Gully outfalls [16] | 64,296.21 | 64,296.21 | RD31 |
| RSZone 1Road 31Storm NetworkA42720 |  | Zone 1 - Road 31 - Storm Network - Gully outfalls - Inner Isolation | 2d | 2026-11-09 | 2026-11-10 | RSZone 1Road 31Storm NetworkA42700 |  |  |  | 118.4d | 0d | Contract Price Original Scope [10716 SAR]; Equipment Operator [20 h]; Labour [91.49 h]; Gully outfalls [16] | 10,716.04 |  | RD31 |
| RSZone 1Road 31Storm NetworkA42710 |  | Zone 1 - Road 31 - Storm Network - Gully outfalls - D.I | 3d | 2026-11-11 | 2026-11-14 | RSZone 1Road 31Storm NetworkA42720 |  |  |  | 118.4d | 0d | Contract Price Original Scope [10716 SAR]; Crane Operator [7 h]; Boom Truck Operator [7 h]; Equipment Operator [7 h]; Labour [91.49 h]; Gully outfalls [16] | 10,716.04 |  | RD31 |
| RSZone 1Road 31Storm NetworkA42730 |  | Zone 1 - Road 31 - Storm Network - Gully outfalls - Backfilling | 2d | 2026-11-15 | 2026-11-16 | RSZone 1Road 31Storm NetworkA42710 |  |  |  | 118.4d | 104d | Contract Price Original Scope [5358.02 SAR]; Excavator Operator [20 h]; Compactor Operator [20 h]; Dump Truck Operator [20 h]; Water Truck Operator [20 h]; Labour [45.74 h]; Gully outfalls [16] | 5,358.02 |  | RD31 |
|  | 6 | **Box Culvert** |  | 2027-02-20 | 2027-03-17 |  |  |  |  |  |  |  |  |  |  |
| RSZone 1Road 31Storm NetworkA41090 |  | Zone 1 - Road 31 - Storm Network - Box Culvert - Excavation | 3d | 2027-02-20 | 2027-02-25 | RSZone 1Road 30Storm NetworkA40690 |  |  |  | 14.4d | 0d | Contract Price Original Scope [49992.3 SAR]; Excavator Operator [30 h]; Dump Truck Operator [30 h]; Labour [426.81 h]; Box Culvert (all sizes/depths) [116] | 49,992.28 |  | RD31 |
| RSZone 1Road 31Storm NetworkA41110 |  | Zone 1 - Road 31 - Storm Network - Box Culvert - SLAB INSTALLATIO | 3d | 2027-02-27 | 2027-03-03 | RSZone 1Road 31Storm NetworkA41090 |  |  |  | 24.4d | 0d | Contract Price Original Scope [99984.6 SAR]; Crane Operator [7 h]; Pump Operator [7 h]; Equipment Operator [7 h]; Labour [853.62 h]; Box Culvert (all sizes/depths) [116] | 99,984.56 |  | RD31 |
| RSZone 1Road 31Storm NetworkA41100 |  | Zone 1 - Road 31 - Storm Network - Box Culvert - Installation | 3d | 2027-03-04 | 2027-03-10 | RSZone 1Road 31Storm NetworkA41110 |  |  |  | 24.4d | 0d | Contract Price Original Scope [249961 SAR]; Crane Operator [7 h]; Equipment Operator [7 h]; Labour [2134.04 h]; Box Culvert (all sizes/depths) [116] | 249,961.4 |  | RD31 |
| RSZone 1Road 31Storm NetworkA41120 |  | Zone 1 - Road 31 - Storm Network - Box Culvert - TEST | 2d | 2027-03-10 | 2027-03-14 | RSZone 1Road 31Storm NetworkA41100 |  |  |  | 24.4d | 0d | Contract Price Original Scope [49992.3 SAR]; Pump Operator [20 h]; Equipment Operator [20 h]; Labour [426.81 h]; Box Culvert (all sizes/depths) [116] | 49,992.28 |  | RD31 |
| RSZone 1Road 31Storm NetworkA41130 |  | Zone 1 - Road 31 - Storm Network - Box Culvert - BACKFILLING | 2d | 2027-03-14 | 2027-03-17 | RSZone 1Road 31Storm NetworkA41120 |  |  |  | 24.4d | 10d | Contract Price Original Scope [49992.3 SAR]; Excavator Operator [20 h]; Compactor Operator [20 h]; Dump Truck Operator [20 h]; Water Truck Operator [20 h]; Labour [426.81 h]; Box Culvert (all sizes/depths) [116] | 49,992.28 |  | RD31 |
|  | 8 | **Ponds** |  | 2025-09-28 | 2027-01-25 |  |  |  |  |  |  |  |  |  |  |
| RSZone 1Road 31PondsA29480 |  | Zone 1 - Road 31 - Storm Network - Ponds - Clearnce | 3d | 2025-09-28 A | 2025-09-30 A | RSZone 1Road 31Storm NetworkA43950 | 100% |  |  |  |  | Contract Price Original Scope [162421 SAR]; Excavator Operator [57 h]; Dump Truck Operator [57 h]; Equipment Operator [57 h]; Labour [1386.67 h]; Ponds - Clearnce [59934] | 162,421.14 | 162,421.14 | RD31 |
| RSZone 1Road 31PondsA29510 |  | Zone 1 - Road 31 - Storm Network - Ponds - Filter | 3d | 2025-10-06 A | 2025-10-08 A | RSZone 1Road 31PondsA29480 | 100% |  |  |  |  | Contract Price Original Scope [16878.5 SAR]; Equipment Operator [55 h]; Labour [144.1 h]; Ponds - Filter [98] | 16,878.54 | 16,878.54 | RD31 |
| RSZone 1Road 31PondsA29520 |  | Zone 1 - Road 31 - Storm Network - Ponds - HDPE geomembrane waterproofing | 4d | 2025-10-09 A | 2025-10-13 A | RSZone 1Road 31PondsA29510 | 100% | 2025-10-09 | 2025-10-14 |  |  | Contract Price Original Scope [109296 SAR]; Equipment Operator [109 h]; Labour [933.11 h]; Ponds - HDPE geomembrane waterproofing [2287] | 109,295.73 | 109,295.73 | RD31 |
| RSZone 1Road 31PondsA29530 |  | Zone 1 - Road 31 - Storm Network - Ponds - Siphon pipework | 5d | 2025-10-14 A | 2025-10-19 A | RSZone 1Road 31PondsA29520 | 100% |  |  |  |  | Contract Price Original Scope [22112.7 SAR]; Excavator Operator [55 h]; Crane Operator [55 h]; Equipment Operator [55 h]; Labour [188.79 h]; Ponds - Siphon pipework [1] | 22,112.65 | 22,112.65 | RD31 |
| RSZone 1Road 31PondsA29540 |  | Zone 1 - Road 31 - Storm Network - Ponds - blinding & Walls Concerete | 3d | 2025-10-20 A | 2025-10-22 A | RSZone 1Road 31PondsA29530 | 100% |  |  |  |  | Contract Price Original Scope [2036.9 SAR]; Crane Operator [55 h]; Pump Operator [55 h]; Equipment Operator [55 h]; Labour [17.39 h]; Ponds - blinding & Walls Concerete [2] | 2,036.9 | 2,036.9 | RD31 |
| RSZone 1Road 31PondsA29550 |  | Zone 1 - Road 31 - Storm Network - Ponds - RAFT Concerete | 3d | 2025-10-23 A | 2025-10-26 A | RSZone 1Road 31PondsA29540 | 100% | 2025-10-23 | 2025-10-27 |  |  | Contract Price Original Scope [5992.49 SAR]; Equipment Operator [55 h]; Labour [51.16 h]; Ponds - RAFT Concerete [6] | 5,992.49 | 5,992.49 | RD31 |
| RSZone 1Road 31PondsA29580 |  | Zone 1 - Road 31 - Storm Network - Ponds - Perimeter waterproof | 4d | 2025-10-29 A | 2025-11-02 A | RSZone 1Road 31PondsA29550 | 100% |  |  |  |  | Contract Price Original Scope [3408.6 SAR]; Equipment Operator [109 h]; Labour [29.1 h]; Ponds - Perimeter waterproof [60] | 3,408.6 | 3,408.6 | RD31 |
| RSZone 1Road 31PondsA29600 |  | Zone 1 - Road 31 - Storm Network - Ponds - Riprap | 3d | 2025-11-03 A | 2025-11-05 A | RSZone 1Road 31PondsA29580 | 100% |  |  |  |  | Contract Price Original Scope [34806 SAR]; Excavator Operator [400 h]; Dump Truck Operator [400 h]; Equipment Operator [400 h]; Water Truck Operator [400 h]; Labour [297.16 h]; Ponds - Riprap [200] | 34,806 | 34,806 | RD31 |
| RSZone 1Road 31PondsA90220 |  | Zone 1 - Road 31 - Storm Network - Ponds - Vertical Concrete (G143) | 3d | 2025-11-06 A | 2025-11-09 A | RSZone 1Road 31PondsA29600 | 100% | 2025-11-06 | 2025-11-10 |  |  | Contract Price Original Scope [1765.65 SAR]; Equipment Operator [55 h]; Labour [15.07 h]; Ponds - Vertical Concrete (G143) [1.6] | 1,765.65 | 1,765.65 | RD31 |
| RSZone 1Road 31PondsA90230 |  | Zone 1 - Road 31 - Storm Network - Ponds - Reinforcement Steel 12 mm (G524) | 2d | 2025-11-10 A | 2025-11-11 A | RSZone 1Road 31PondsA90220 | 100% |  |  |  |  | Contract Price Original Scope [20311.4 SAR]; Equipment Operator [55 h]; Labour [173.41 h]; Ponds - Reinforcement Steel 12 mm (G524) [3.5] | 20,311.43 | 20,311.43 | RD31 |
| RSZone 1Road 31PondsA29490-old |  | Zone 1 - Road 31 - Storm Network - Ponds - Excavation (old) | 144d | 2026-05-17 A | 2026-11-01 A | RSZone 1Road 31PondsA29500-old | 100% |  |  |  |  | Contract Price Original Scope [696804 SAR]; Excavator Operator [27 h]; Dump Truck Operator [27 h]; Labour [5948.95 h]; Ponds - Excavation [45453.6] | 696,803.69 | 696,803.69 | RD31 |
| RSZone 1Road 31PondsA29500-old |  | Zone 1 - Road 31 - Storm Network - Ponds - Disposal Material (old) | 142d | 2026-05-19 A | 2026-11-01 A | RSZone 1Road 31PondsA90230, RSZone 1Road 26PondsA29240-old | 100% |  |  |  |  | Contract Price Original Scope [513597 SAR]; Excavator Operator [106.82 h]; Dump Truck Operator [106.82 h]; Equipment Operator [106.82 h]; Labour [4384.82 h]; Ponds - Disposal Material [40697.2] | 513,596.8 | 513,596.8 | RD31 |
| RSZone 1Road 31PondsA29560-old |  | Zone 1 - Road 31 - Storm Network - Ponds - Backfilling (old) | 140d | 2026-05-21 A | 2026-11-01 A | RSZone 1Road 31PondsA29490-old | 100% | 2026-05-21 | 2026-11-02 |  |  | Contract Price Original Scope [220228 SAR]; Excavator Operator [15.55 h]; Compactor Operator [15.55 h]; Dump Truck Operator [15.55 h]; Water Truck Operator [15.55 h]; Labour [1880.19 h]; Ponds - Backfilling [6978.06] | 220,227.65 | 220,227.65 | RD31 |
| RSZone 1Road 31PondsA29500 |  | Zone 1 - Road 31 - Storm Network - Ponds - Disposal Material | 1d | 2026-11-11 | 2026-11-11 | RSZone 1Road 31PondsA29500-old, RSZone 1Road 26PondsA29240 |  |  |  | 46.4d | 0d | Contract Price Original Scope [10497.9 SAR]; Excavator Operator [2.18 h]; Dump Truck Operator [2.18 h]; Equipment Operator [2.18 h]; Labour [89.63 h]; Ponds - Disposal Material [831.85] | 10,497.92 |  | RD31 |
| RSZone 1Road 31PondsA29490 |  | Zone 1 - Road 31 - Storm Network - Ponds - Excavation | 1d | 2026-11-12 | 2026-11-12 | RSZone 1Road 31PondsA29490-old, RSZone 1Road 31PondsA29500 |  |  |  | 46.4d | 0d | Contract Price Original Scope [77422.6 SAR]; Excavator Operator [3 h]; Dump Truck Operator [3 h]; Labour [660.99 h]; Ponds - Excavation [5050.4] | 77,422.63 |  | RD31 |
| RSZone 1Road 31PondsA29560 |  | Zone 1 - Road 31 - Storm Network - Ponds - Backfilling | 1d | 2026-11-14 | 2026-11-14 | RSZone 1Road 31PondsA29560-old, RSZone 1Road 31PondsA29490 |  |  |  | 46.4d | 46.19d | Contract Price Original Scope [63023.3 SAR]; Excavator Operator [4.45 h]; Compactor Operator [4.45 h]; Dump Truck Operator [4.45 h]; Water Truck Operator [4.45 h]; Labour [538.06 h]; Ponds - Backfilling [1996.94] | 63,023.35 |  | RD31 |
| RSZone 1Road 31PondsA29590 |  | Zone 1 - Road 31 - Storm Network - Ponds - Entrance Rood | 15d | 2027-01-07 | 2027-01-25 | RSZone 1Road 31PondsA29560, RSZone 1Road 26PondsA29330, RSZone 1Road 31PondsA29490, RSZone 1Road 31PondsA29500 |  |  |  | 0.21d | 0d | Contract Price Original Scope [58059.8 SAR]; Grader Operator [37 h]; Paver Operator [37 h]; Compactor Operator [37 h]; Dozer Operator [37 h]; Water Truck Operator [37 h]; Labour [495.68 h]; Ponds - Entrance Rood [1022] | 58,059.82 |  | RD31 |

| ID | WBS | Activity | Duration | Start | Finish | Predecessors | Complete | Planned start | Planned finish | Total float | Free float | Resources | Cost | Actual cost | MODON |
| --- | --- | --- | --- | --- | --- | --- | --- | --- | --- | --- | --- | --- | --- | --- | --- |
|  | 1 | **Sewage Network** |  | 2026-05-24 | 2026-11-16 |  |  |  |  |  |  |  |  |  |  |
|  | 10 | **Manhole** |  | 2026-05-24 | 2026-11-16 |  |  |  |  |  |  |  |  |  |  |
| RSZone 1Road 31Sewage NetworkA34110-old |  | Zone 1 - Road 31 - Sewage Network - Manhole - Excavation (old) | 138d | 2026-05-24 A | 2026-11-01 A | RSZone 1Road 30Sewage NetworkA34050 | 100% |  |  |  |  | Contract Price Original Scope [32304.8 SAR]; Excavator Operator [28.33 h]; Dump Truck Operator [28.33 h]; Labour [275.8 h]; Manholes (all depths, GRP) [17] | 32,304.81 | 32,304.81 | RD31 |
| RSZone 1Road 31Sewage NetworkA34120-old |  | Zone 1 - Road 31 - Sewage Network - Manhole - FOOTING (old) | 136d | 2026-05-26 A | 2026-11-01 A | RSZone 1Road 31Sewage NetworkA34110-old | 100% |  |  |  |  | Contract Price Original Scope [193829 SAR]; Crane Operator [4.72 h]; Pump Operator [4.72 h]; Equipment Operator [4.72 h]; Labour [1654.81 h]; Manholes (all depths, GRP) [17] | 193,828.84 | 193,828.84 | RD31 |
| RSZone 1Road 31Sewage NetworkA34130-old |  | Zone 1 - Road 31 - Sewage Network - Manhole - MH INSTALLATION (old) | 134d | 2026-05-28 A | 2026-11-01 A | RSZone 1Road 31Sewage NetworkA34120-old | 100% | 2026-05-28 | 2026-11-02 |  |  | Contract Price Original Scope [226134 SAR]; Crane Operator [4.72 h]; Boom Truck Operator [4.72 h]; Equipment Operator [4.72 h]; Labour [1930.61 h]; Manholes (all depths, GRP) [17] | 226,133.64 | 226,133.64 | RD31 |
| RSZone 1Road 31Sewage NetworkA34110 |  | Zone 1 - Road 31 - Sewage Network - Manhole - Excavation | 1d | 2026-11-02 A | 2026-11-05 A | RSZone 1Road 31Sewage NetworkA34110-old | 100% | 2026-11-02 | 2026-11-02 |  |  | Contract Price Original Scope [1900.28 SAR]; Excavator Operator [1.67 h]; Dump Truck Operator [1.67 h]; Labour [16.22 h]; Manholes (all depths, GRP) [1] | 1,900.28 | 1,900.28 | RD31 |
| RSZone 1Road 31Sewage NetworkA34120 |  | Zone 1 - Road 31 - Sewage Network - Manhole - FOOTING | 1d | 2026-11-02 A | 2026-11-05 A | RSZone 1Road 31Sewage NetworkA34120-old, RSZone 1Road 31Sewage NetworkA34110 | 100% | 2026-11-03 | 2026-11-03 |  |  | Contract Price Original Scope [11401.7 SAR]; Crane Operator [0.28 h]; Pump Operator [0.28 h]; Equipment Operator [0.28 h]; Labour [97.34 h]; Manholes (all depths, GRP) [1] | 11,401.7 | 11,401.7 | RD31 |
| RSZone 1Road 31Sewage NetworkA34130 |  | Zone 1 - Road 31 - Sewage Network - Manhole - MH INSTALLATION | 1d | 2026-11-02 A | 2026-11-05 A | RSZone 1Road 31Sewage NetworkA34130-old, RSZone 1Road 31Sewage NetworkA34120 | 100% | 2026-11-04 | 2026-11-04 |  |  | Contract Price Original Scope [13302 SAR]; Crane Operator [0.28 h]; Boom Truck Operator [0.28 h]; Equipment Operator [0.28 h]; Labour [113.57 h]; Manholes (all depths, GRP) [1] | 13,301.98 | 13,301.98 | RD31 |
| RSZone 1Road 31Sewage NetworkA34140 |  | Zone 1 - Road 31 - Sewage Network - Manhole - COVER INSTALLATION | 3d | 2026-11-09 | 2026-11-11 | RSZone 1Road 31Sewage NetworkA34130, RSZone 1Road 31Sewage NetworkA34110, RSZone 1Road 31Sewage NetworkA34120 |  |  |  | 98.4d | 0d | Contract Price Original Scope [433264 SAR]; Crane Operator [5 h]; Boom Truck Operator [5 h]; Equipment Operator [5 h]; Labour [3698.99 h]; Manholes (all depths, GRP) [114] | 433,264.46 |  | RD31 |
| RSZone 1Road 31Sewage NetworkA34150 |  | Zone 1 - Road 31 - Sewage Network - Manhole - TEST | 2d | 2026-11-12 | 2026-11-14 | RSZone 1Road 31Sewage NetworkA34140 |  |  |  | 98.4d | 0d | Contract Price Original Scope [68410.2 SAR]; Pump Operator [20 h]; Equipment Operator [20 h]; Labour [584.05 h]; Manholes (all depths, GRP) [18] | 68,410.18 |  | RD31 |
| RSZone 1Road 31Sewage NetworkA34160 |  | Zone 1 - Road 31 - Sewage Network - Manhole - BACKFILLING | 2d | 2026-11-15 | 2026-11-16 | RSZone 1Road 31Sewage NetworkA34150 |  |  |  | 98.4d | 97.8d | Contract Price Original Scope [68410.2 SAR]; Excavator Operator [20 h]; Compactor Operator [20 h]; Dump Truck Operator [20 h]; Water Truck Operator [20 h]; Labour [584.05 h]; Manholes (all depths, GRP) [18] | 68,410.18 |  | RD31 |
|  | 7 | **Potable Network** |  | 2025-11-16 | 2026-11-22 |  |  |  |  |  |  |  |  |  |  |
|  | 3 | **Potable Pipes 200 MM** |  | 2026-06-10 | 2026-11-12 |  |  |  |  |  |  |  |  |  |  |
| RSZone 1Road 31Potable NetworkA54940-old |  | Zone 1 - Road 31 - Potable Network - Potable Pipes 200 MM - Excavation (old) | 123d | 2026-06-10 A | 2026-11-01 A | RSZone 1Road 30Potable NetworkA90210 | 100% |  |  |  |  | Contract Price Original Scope [1219.3 SAR]; Excavator Operator [25.17 h]; Dump Truck Operator [25.17 h]; Labour [10.41 h]; Potable Pipes 200 MM [48.66] | 1,219.3 | 1,219.3 | RD31 |
| RSZone 1Road 31Potable NetworkA54950-old |  | Zone 1 - Road 31 - Potable Network - Potable Pipes 200 MM - Installation (old) | 122d | 2026-06-11 A | 2026-11-01 A | RSZone 1Road 31Potable NetworkA54940-old | 100% | 2026-06-11 | 2026-11-02 |  |  | Contract Price Original Scope [8535.11 SAR]; Labour [72.87 h]; Potable Pipes 200 MM [48.66] | 8,535.11 | 8,535.11 | RD31 |
| RSZone 1Road 31Potable NetworkA54960-old |  | Zone 1 - Road 31 - Potable Network - Potable Pipes 200 MM - Test (old) | 120d | 2026-06-14 A | 2026-11-01 A | RSZone 1Road 31Potable NetworkA54950-old | 100% |  |  |  |  | Contract Price Original Scope [1219.7 SAR]; Pump Operator [16.78 h]; Equipment Operator [16.78 h]; Labour [10.41 h]; Potable Pipes 200 MM [48.67] | 1,219.7 | 1,219.7 | RD31 |
| RSZone 1Road 31Potable NetworkA54970-old |  | Zone 1 - Road 31 - Potable Network - Potable Pipes 200 MM - Backfilling (old) | 119d | 2026-06-15 A | 2026-11-01 A | RSZone 1Road 31Potable NetworkA54960-old | 100% |  |  |  |  | Contract Price Original Scope [1219.7 SAR]; Excavator Operator [16.78 h]; Compactor Operator [16.78 h]; Dump Truck Operator [16.78 h]; Water Truck Operator [16.78 h]; Labour [10.41 h]; Potable Pipes 200 MM [48.67] | 1,219.7 | 1,219.7 | RD31 |
| RSZone 1Road 31Potable NetworkA54940 |  | Zone 1 - Road 31 - Potable Network - Potable Pipes 200 MM - Excavation | 1d | 2026-11-09 | 2026-11-09 | RSZone 1Road 31Potable NetworkA54940-old |  |  |  | 97.4d | 0d | Contract Price Original Scope [234.17 SAR]; Excavator Operator [4.83 h]; Dump Truck Operator [4.83 h]; Labour [2 h]; Potable Pipes 200 MM [9.34] | 234.17 |  | RD31 |
| RSZone 1Road 31Potable NetworkA54950 |  | Zone 1 - Road 31 - Potable Network - Potable Pipes 200 MM - Installation | 1d | 2026-11-10 | 2026-11-10 | RSZone 1Road 31Potable NetworkA54950-old, RSZone 1Road 31Potable NetworkA54940 |  |  |  | 97.4d | 0d | Contract Price Original Scope [1639.19 SAR]; Labour [13.99 h]; Potable Pipes 200 MM [9.34] | 1,639.19 |  | RD31 |
| RSZone 1Road 31Potable NetworkA54960 |  | Zone 1 - Road 31 - Potable Network - Potable Pipes 200 MM - Test | 1d | 2026-11-11 | 2026-11-11 | RSZone 1Road 31Potable NetworkA54960-old, RSZone 1Road 31Potable NetworkA54950 |  |  |  | 97.4d | 0d | Contract Price Original Scope [233.77 SAR]; Pump Operator [3.22 h]; Equipment Operator [3.22 h]; Labour [2 h]; Potable Pipes 200 MM [9.33] | 233.77 |  | RD31 |
| RSZone 1Road 31Potable NetworkA54970 |  | Zone 1 - Road 31 - Potable Network - Potable Pipes 200 MM - Backfilling | 1d | 2026-11-12 | 2026-11-12 | RSZone 1Road 31Potable NetworkA54970-old, RSZone 1Road 31Potable NetworkA54960 |  |  |  | 97.4d | 97.2d | Contract Price Original Scope [233.77 SAR]; Excavator Operator [3.22 h]; Compactor Operator [3.22 h]; Dump Truck Operator [3.22 h]; Water Truck Operator [3.22 h]; Labour [2 h]; Potable Pipes 200 MM [9.33] | 233.77 |  | RD31 |
|  | 6 | **Fittings** |  | 2025-11-16 | 2025-11-17 |  |  |  |  |  |  |  |  |  |  |
|  | 3 | **Tees** |  | 2025-11-16 | 2025-11-17 |  |  |  |  |  |  |  |  |  |  |
| RSZone 1Road 31Potable NetworkA55670 |  | Zone 1 - Road 31 - Potable Network - Tees - Installation | 2d | 2025-11-16 A | 2025-11-17 A | RSZone 1Road 30Potable NetworkA90210 | 100% |  |  |  |  | Contract Price Original Scope [20997.2 SAR]; Labour [179.26 h]; Fittings - Tees (all sizes) [7] | 20,997.21 | 20,997.21 | RD31 |

| ID | WBS | Activity | Duration | Start | Finish | Predecessors | Complete | Planned start | Planned finish | Total float | Free float | Resources | Cost | Actual cost | MODON |
| --- | --- | --- | --- | --- | --- | --- | --- | --- | --- | --- | --- | --- | --- | --- | --- |
|  | 4 | **Buried Valves** |  | 2026-06-25 | 2026-11-18 |  |  |  |  |  |  |  |  |  |  |
| RSZone 1Road 31Potable NetworkA56270-old |  | Zone 1 - Road 31 - Potable Network - Buried Valves - Excavation (old) | 110d | 2026-06-25 A | 2026-11-01 A | RSZone 1Road 31Potable NetworkA55670 | 100% | 2026-06-25 | 2026-11-02 |  |  | Contract Price Original Scope [2242.12 SAR]; Excavator Operator [24.7 h]; Dump Truck Operator [24.7 h]; Labour [19.14 h]; Buried Valves [14] | 2,242.12 | 2,242.12 | RD31 |
| RSZone 1Road 31Potable NetworkA56280-old |  | Zone 1 - Road 31 - Potable Network - Buried Valves - Installation (old) | 108d | 2026-06-28 A | 2026-11-01 A | RSZone 1Road 31Potable NetworkA56270-old | 100% |  |  |  |  | Contract Price Original Scope [29147.6 SAR]; Labour [248.85 h]; Buried Valves [14] | 29,147.6 | 29,147.6 | RD31 |
| RSZone 1Road 31Potable NetworkA56300-old |  | Zone 1 - Road 31 - Potable Network - Buried Valves - Test (old) | 107d | 2026-06-29 A | 2026-11-01 A | RSZone 1Road 31Potable NetworkA56280-old | 100% |  |  |  |  | Contract Price Original Scope [3848.83 SAR]; Pump Operator [7.07 h]; Equipment Operator [7.07 h]; Labour [32.86 h]; Buried Valves [6.01] | 3,848.83 | 3,848.83 | RD31 |
| RSZone 1Road 31Potable NetworkA56270 |  | Zone 1 - Road 31 - Potable Network - Buried Valves - Excavation | 1d | 2026-11-09 | 2026-11-09 | RSZone 1Road 31Potable NetworkA56270-old |  |  |  | 90.3d | 0d | Contract Price Original Scope [481.1 SAR]; Excavator Operator [5.3 h]; Dump Truck Operator [5.3 h]; Labour [4.11 h]; Buried Valves [3] | 481.1 |  | RD31 |
| RSZone 1Road 31Potable NetworkA56280 |  | Zone 1 - Road 31 - Potable Network - Buried Valves - Installation | 1d | 2026-11-10 | 2026-11-10 | RSZone 1Road 31Potable NetworkA56280-old, RSZone 1Road 31Potable NetworkA56270 |  |  |  | 93.11d | 0d | Contract Price Original Scope [6254.34 SAR]; Labour [53.4 h]; Buried Valves [3] | 6,254.34 |  | RD31 |
| RSZone 1Road 31Potable NetworkA56300 |  | Zone 1 - Road 31 - Potable Network - Buried Valves - Test | 1.29d | 2026-11-11 | 2026-11-12 | RSZone 1Road 31Potable NetworkA56300-old, RSZone 1Road 31Potable NetworkA56280 |  |  |  | 93.11d | 0d | Contract Price Original Scope [7044.08 SAR]; Pump Operator [12.93 h]; Equipment Operator [12.93 h]; Labour [60.14 h]; Buried Valves [10.99] | 7,044.08 |  | RD31 |
| RSZone 1Road 31Potable NetworkA56290 |  | Zone 1 - Road 31 - Potable Network - Buried Valves - Surface Box | 3d | 2026-11-12 | 2026-11-16 | RSZone 1Road 31Potable NetworkA56300, RSZone 1Road 31Potable NetworkA56270, RSZone 1Road 31Potable NetworkA56280 |  |  |  | 93.11d | 0d | Labour; Buried Valves [17] |  |  | RD31 |
| RSZone 1Road 31Potable NetworkA56310 |  | Zone 1 - Road 31 - Potable Network - Buried Valves - Backfilling | 2d | 2026-11-16 | 2026-11-18 | RSZone 1Road 31Potable NetworkA56290 |  |  |  | 93.11d | 92.91d | Contract Price Original Scope [5446.45 SAR]; Excavator Operator [20 h]; Compactor Operator [20 h]; Dump Truck Operator [20 h]; Water Truck Operator [20 h]; Labour [46.5 h]; Buried Valves [17] | 5,446.45 |  | RD31 |
|  | 5 | **Buried Valves-1** |  | 2026-09-01 | 2026-11-16 |  |  |  |  |  |  |  |  |  |  |
| RSZone 1Road 31Irrigation NetworkA94870 |  | Zone 1 - Road 31 - Lateral Irrigation Network - Buried Valves-1 - Excavation | 5d | 2026-09-01 A | 2026-09-06 A | RSZone 1Road 30Irrigation NetworkA27120 | 100% |  |  |  |  | Contract Price Original Scope [538.05 SAR]; Excavator Operator [30 h]; Dump Truck Operator [30 h]; Labour [4.59 h]; Buried Valves [8] | 538.05 | 538.05 | RD31 |
| RSZone 1Road 31Irrigation NetworkA94880 |  | Zone 1 - Road 31 - Lateral Irrigation Network - Buried Valves-1 - Installation | 2d | 2026-09-07 A | 2026-09-08 A | RSZone 1Road 31Irrigation NetworkA94870, RSZone 1Road 31Irrigation NetworkA94870 FF | 100% |  |  |  |  | Contract Price Original Scope [6994.69 SAR]; Labour [59.72 h]; Buried Valves [8] | 6,994.69 | 6,994.69 | RD31 |
| RSZone 1Road 31Irrigation NetworkA94890 |  | Zone 1 - Road 31 - Lateral Irrigation Network - Buried Valves-1 - Surface Box | 3d | 2026-11-09 | 2026-11-11 | RSZone 1Road 31Irrigation NetworkA94880 |  |  |  | 94.4d | 0d | Labour; Buried Valves [8] |  |  | RD31 |
| RSZone 1Road 31Irrigation NetworkA94900 |  | Zone 1 - Road 31 - Lateral Irrigation Network - Buried Valves-1 - Test | 2d | 2026-11-12 | 2026-11-14 | RSZone 1Road 31Irrigation NetworkA94890 |  |  |  | 94.4d | 0d | Contract Price Original Scope [2152.21 SAR]; Pump Operator [20 h]; Equipment Operator [20 h]; Labour [18.37 h]; Buried Valves [8] | 2,152.21 |  | RD31 |
| RSZone 1Road 31Irrigation NetworkA94910 |  | Zone 1 - Road 31 - Lateral Irrigation Network - Buried Valves-1 - Backfilling | 2d | 2026-11-15 | 2026-11-16 | RSZone 1Road 31Irrigation NetworkA94900 |  |  |  | 94.4d | 93.76d | Contract Price Original Scope [1076.11 SAR]; Excavator Operator [20 h]; Compactor Operator [20 h]; Dump Truck Operator [20 h]; Water Truck Operator [20 h]; Labour [9.19 h]; Buried Valves [8] | 1,076.11 |  | RD31 |
|  | 7 | **FIRE HYDRANT** |  | 2026-07-05 | 2026-11-22 |  |  |  |  |  |  |  |  |  |  |
| RSZone 1Road 31Potable NetworkA57960-old |  | Zone 1 - Road 31 - Potable Network - FIRE HYDRANT - Excavation (old) | 102d | 2026-07-05 A | 2026-11-01 A | RSZone 1Road 31Potable NetworkA56270-old | 100% |  |  |  |  | Contract Price Original Scope [8324.46 SAR]; Excavator Operator [25.72 h]; Dump Truck Operator [25.72 h]; Labour [71.07 h]; Fire Hydrant [6] | 8,324.46 | 8,324.46 | RD31 |
| RSZone 1Road 31Potable NetworkA57970-old |  | Zone 1 - Road 31 - Potable Network - FIRE HYDRANT - Buried Gate Valve Installation (old) | 100d | 2026-07-07 A | 2026-11-01 A | RSZone 1Road 31Potable NetworkA57960-old | 100% |  |  |  |  | Labour; Fire Hydrant [6] |  |  | RD31 |
| RSZone 1Road 31Potable NetworkA57980-old |  | Zone 1 - Road 31 - Potable Network - FIRE HYDRANT - Fire Hydrant Installation (old) | 98d | 2026-07-09 A | 2026-11-01 A | RSZone 1Road 31Potable NetworkA57970-old | 100% | 2026-07-09 | 2026-11-02 |  |  | Contract Price Original Scope [60768.6 SAR]; Labour [518.81 h]; Fire Hydrant [6] | 60,768.58 | 60,768.58 | RD31 |
| RSZone 1Road 31Potable NetworkA57960 |  | Zone 1 - Road 31 - Potable Network - FIRE HYDRANT - Excavation | 1d | 2026-11-10 | 2026-11-10 | RSZone 1Road 31Potable NetworkA57960-old, RSZone 1Road 31Potable NetworkA56270 |  |  |  | 90.3d | 0d | Contract Price Original Scope [1386.51 SAR]; Excavator Operator [4.28 h]; Dump Truck Operator [4.28 h]; Labour [11.84 h]; Fire Hydrant [1] | 1,386.51 |  | RD31 |
| RSZone 1Road 31Potable NetworkA57970 |  | Zone 1 - Road 31 - Potable Network - FIRE HYDRANT - Buried Gate Valve Installation | 1.1d | 2026-11-11 | 2026-11-12 | RSZone 1Road 31Potable NetworkA57970-old, RSZone 1Road 31Potable NetworkA57960 |  |  |  | 90.3d | 0d | Labour; Fire Hydrant [1] |  |  | RD31 |
| RSZone 1Road 31Potable NetworkA57980 |  | Zone 1 - Road 31 - Potable Network - FIRE HYDRANT - Fire Hydrant Installation | 1d | 2026-11-12 | 2026-11-14 | RSZone 1Road 31Potable NetworkA57980-old, RSZone 1Road 31Potable NetworkA57970 |  |  |  | 90.3d | 0d | Contract Price Original Scope [10121.5 SAR]; Labour [86.41 h]; Fire Hydrant [1] | 10,121.53 |  | RD31 |
| RSZone 1Road 31Potable NetworkA57990 |  | Zone 1 - Road 31 - Potable Network - FIRE HYDRANT - Surface Box | 3d | 2026-11-14 | 2026-11-17 | RSZone 1Road 31Potable NetworkA57980, RSZone 1Road 31Potable NetworkA57960, RSZone 1Road 31Potable NetworkA57970 |  |  |  | 90.3d | 0d | Labour; Fire Hydrant [7] |  |  | RD31 |
| RSZone 1Road 31Potable NetworkA58000 |  | Zone 1 - Road 31 - Potable Network - FIRE HYDRANT - Test | 2d | 2026-11-17 | 2026-11-19 | RSZone 1Road 31Potable NetworkA57990 |  |  |  | 90.3d | 0d | Contract Price Original Scope [6797.68 SAR]; Pump Operator [20 h]; Equipment Operator [20 h]; Labour [58.04 h]; Fire Hydrant [7] | 6,797.68 |  | RD31 |
| RSZone 1Road 31Potable NetworkA58010 |  | Zone 1 - Road 31 - Potable Network - FIRE HYDRANT - Backfilling | 2d | 2026-11-19 | 2026-11-22 | RSZone 1Road 31Potable NetworkA58000 |  |  |  | 90.3d | 90.1d | Contract Price Original Scope [9710.97 SAR]; Excavator Operator [20 h]; Compactor Operator [20 h]; Dump Truck Operator [20 h]; Water Truck Operator [20 h]; Labour [82.91 h]; Fire Hydrant [7] | 9,710.97 |  | RD31 |

| ID | WBS | Activity | Duration | Start | Finish | Predecessors | Complete | Total float | Free float | Resources | Cost | Actual cost | MODON |
| --- | --- | --- | --- | --- | --- | --- | --- | --- | --- | --- | --- | --- | --- |
|  | 2 | **Thurst Blocks** |  | 2026-06-21 | 2026-11-11 |  |  |  |  |  |  |  |  |
| RSZone 1Road 31Potable NetworkA55740-old |  | Zone 1 - Road 31 - Potable Network - Thurst Blocks - Thrust Block (old) | 114d | 2026-06-21 A | 2026-11-01 A | RSZone 1Road 31Potable NetworkA57960-old | 100% |  |  | Contract Price Original Scope [43853.4 SAR]; Crane Operator [19.5 h]; Pump Operator [19.5 h]; Equipment Operator [19.5 h]; Labour [374.4 h]; Thrust Blocks [13] | 43,853.43 | 43,853.43 | RD31 |
| RSZone 1Road 31Potable NetworkA55740 |  | Zone 1 - Road 31 - Potable Network - Thurst Blocks - Thrust Block | 1d | 2026-11-11 | 2026-11-11 | RSZone 1Road 31Potable NetworkA55740-old, RSZone 1Road 31Potable NetworkA57960 |  | 97.4d | 0d | Contract Price Original Scope [10120 SAR]; Crane Operator [4.5 h]; Pump Operator [4.5 h]; Equipment Operator [4.5 h]; Labour [86.4 h]; Thrust Blocks [3] | 10,120.02 |  | RD31 |
|  | 1 | **Sand Bedding** |  | 2026-06-21 | 2026-11-12 |  |  |  |  |  |  |  |  |
| RSZone 1Road 31Potable NetworkA55810-old |  | Zone 1 - Road 31 - Potable Network - Sand Bedding - Bedding (old) | 114d | 2026-06-21 A | 2026-11-01 A | RSZone 1Road 31Potable NetworkA55740-old | 100% |  |  | Contract Price Original Scope [910.83 SAR]; Compactor Operator [16.9 h]; Equipment Operator [16.9 h]; Water Truck Operator [16.9 h]; Labour [7.78 h]; Sand Bedding [49.01] | 910.83 | 910.83 | RD31 |
| RSZone 1Road 31Potable NetworkA55810 |  | Zone 1 - Road 31 - Potable Network - Sand Bedding - Bedding | 1d | 2026-11-12 | 2026-11-12 | RSZone 1Road 31Potable NetworkA55810-old, RSZone 1Road 31Potable NetworkA55740 |  | 97.4d | 97.2d | Contract Price Original Scope [167.08 SAR]; Compactor Operator [3.1 h]; Equipment Operator [3.1 h]; Water Truck Operator [3.1 h]; Labour [1.43 h]; Sand Bedding [8.99] | 167.08 |  | RD31 |
|  | 6 | **Lateral Irrigation Network** |  | 2026-07-26 | 2026-11-11 |  |  |  |  |  |  |  |  |
|  | 1 | **HDPE Fitting** |  | 2026-07-26 | 2026-11-11 |  |  |  |  |  |  |  |  |
|  | 2 | **Tees** |  | 2026-07-26 | 2026-07-27 |  |  |  |  |  |  |  |  |
| RSZone 1Road 31Irrigation NetworkA90240 |  | Zone 1 - Road 31 - Lateral Irrigation Network - Tees - Installation | 2d | 2026-07-26 A | 2026-07-27 A | RSZone 1Road 31Irrigation NetworkA94880 | 100% |  |  | Contract Price Original Scope [6144.24 SAR]; Labour [52.46 h]; Fittings - Tees (all sizes) [4] | 6,144.24 | 6,144.24 | RD31 |
|  | 3 | **End Cap** |  | 2026-11-09 | 2026-11-11 |  |  |  |  |  |  |  |  |
| RSZone 1Road 31Irrigation NetworkA90250 |  | Zone 1 - Road 31 - Lateral Irrigation Network - End Cap - Installation | 3d | 2026-11-09 | 2026-11-11 | RSZone 1Road 31Irrigation NetworkA90240 |  | 98.4d | 97.76d | Contract Price Original Scope [1494.36 SAR]; Labour [12.76 h]; Fittings - End Caps (all sizes) [4] | 1,494.36 |  | RD31 |
|  | 4 | **Thrust Block** |  | 2026-07-26 | 2026-07-27 |  |  |  |  |  |  |  |  |
| RSZone 1Road 31Irrigation NetworkA90260 |  | Zone 1 - Road 31 - Lateral Irrigation Network - Thrust Block - Thrust Block | 2d | 2026-07-26 A | 2026-07-27 A | RSZone 1Road 31Irrigation NetworkA90240 | 100% |  |  | Contract Price Original Scope [4087.04 SAR]; Crane Operator [12 h]; Pump Operator [12 h]; Equipment Operator [12 h]; Labour [34.89 h]; Thrust Blocks [4] | 4,087.04 | 4,087.04 | RD31 |
|  | 12 | **Telecom Network** |  | 2026-07-12 | 2026-11-18 |  |  |  |  |  |  |  |  |
|  | 3 | **Telecom Pipe** |  | 2026-07-12 | 2026-11-18 |  |  |  |  |  |  |  |  |
| RSZone 1Road 31Telecom NetworkA62400-old |  | Zone 1 - Road 31 - Telecom Network - Telecom Pipe - Excavation (old) | 96d | 2026-07-12 A | 2026-11-01 A | RSZone 1Road 30Telecom NetworkA66760 | 100% |  |  | Contract Price Original Scope [791.78 SAR]; Excavator Operator [0.68 h]; Dump Truck Operator [0.68 h]; Labour [6.76 h]; Telecom Pipe [36.74] | 791.78 | 791.78 | RD31 |
| RSZone 1Road 31Telecom NetworkA62410-old |  | Zone 1 - Road 31 - Telecom Network - Telecom Pipe - Concrete Pouring (old) | 95d | 2026-07-13 A | 2026-11-01 A | RSZone 1Road 31Telecom NetworkA62400-old | 100% |  |  | Contract Price Original Scope [5615.27 SAR]; Crane Operator [0.3 h]; Pump Operator [0.3 h]; Equipment Operator [0.3 h]; Labour [47.94 h]; Telecom Pipe [37.22] | 5,615.27 | 5,615.27 | RD31 |
| RSZone 1Road 31Telecom NetworkA62400 |  | Zone 1 - Road 31 - Telecom Network - Telecom Pipe - Excavation | 2.93d | 2026-11-09 | 2026-11-11 | RSZone 1Road 31Telecom NetworkA62400-old |  | 98.2d | 0d | Contract Price Original Scope [33969.4 SAR]; Excavator Operator [29.32 h]; Dump Truck Operator [29.32 h]; Labour [290.01 h]; Telecom Pipe [1576.26] | 33,969.44 |  | RD31 |
| RSZone 1Road 31Telecom NetworkA62410 |  | Zone 1 - Road 31 - Telecom Network - Telecom Pipe - Concrete Pouring | 1.27d | 2026-11-11 | 2026-11-14 | RSZone 1Road 31Telecom NetworkA62410-old, RSZone 1Road 31Telecom NetworkA62400 |  | 98.2d | 0d | Contract Price Original Scope [237713 SAR]; Crane Operator [12.7 h]; Pump Operator [12.7 h]; Equipment Operator [12.7 h]; Labour [2029.47 h]; Telecom Pipe [1575.78] | 237,713.28 |  | RD31 |
| RSZone 1Road 31Telecom NetworkA62420 |  | Zone 1 - Road 31 - Telecom Network - Telecom Pipe - Test | 2d | 2026-11-14 | 2026-11-16 | RSZone 1Road 31Telecom NetworkA62410 |  | 98.2d | 0d | Contract Price Original Scope [34761.2 SAR]; Pump Operator [20 h]; Equipment Operator [20 h]; Labour [296.77 h]; Telecom Pipe [1613] | 34,761.22 |  | RD31 |
| RSZone 1Road 31Telecom NetworkA62430 |  | Zone 1 - Road 31 - Telecom Network - Telecom Pipe - Backfilling | 2d | 2026-11-16 | 2026-11-18 | RSZone 1Road 31Telecom NetworkA62420, RSZone 1Road 31Telecom NetworkA62400 |  | 98.2d | 97.8d | Contract Price Original Scope [34761.2 SAR]; Excavator Operator [20 h]; Compactor Operator [20 h]; Dump Truck Operator [20 h]; Water Truck Operator [20 h]; Labour [296.77 h]; Telecom Pipe [1613] | 34,761.22 |  | RD31 |
|  | 2 | **TELECOM MANHOLE** |  | 2026-07-26 | 2026-11-18 |  |  |  |  |  |  |  |  |
| RSZone 1Road 31Telecom NetworkA68840-old |  | Zone 1 - Road 31 - Telecom Network - TELECOM MANHOLE - Manhole Installation (old) | 84d | 2026-07-26 A | 2026-11-01 A | RSZone 1Road 30Telecom NetworkA68720-old | 100% |  |  | Contract Price Original Scope [114061 SAR]; Crane Operator [13.3 h]; Boom Truck Operator [13.3 h]; Equipment Operator [13.3 h]; Labour [973.8 h]; Telecom Manhole [7.6] | 114,061.33 | 114,061.33 | RD31 |
| RSZone 1Road 31Telecom NetworkA68840 |  | Zone 1 - Road 31 - Telecom Network - TELECOM MANHOLE - Manhole Installation | 1d | 2026-11-18 | 2026-11-18 | RSZone 1Road 31Telecom NetworkA68840-old, RSZone 1Road 30Telecom NetworkA68720 |  | 76.4d | 0d | Contract Price Original Scope [6003.23 SAR]; Crane Operator [0.7 h]; Boom Truck Operator [0.7 h]; Equipment Operator [0.7 h]; Labour [51.25 h]; Telecom Manhole [0.4] | 6,003.23 |  | RD31 |

| ID | WBS | Activity | Duration | Start | Finish | Predecessors | Complete | Planned start | Planned finish | Total float | Free float | Resources | Cost | Actual cost | MODON |
| --- | --- | --- | --- | --- | --- | --- | --- | --- | --- | --- | --- | --- | --- | --- | --- |
|  | 18 | **Road 32** |  | 2025-07-21 | 2027-03-31 |  |  |  |  |  |  |  |  |  |  |
|  | 10 | **Storm Network** |  | 2025-10-19 | 2027-03-31 |  |  |  |  |  |  |  |  |  |  |
|  | 2 | **Collection Pipes 150 MM** |  | 2026-07-12 | 2026-11-12 |  |  |  |  |  |  |  |  |  |  |
| RSZone 1Road 32Storm NetworkA88420 |  | Zone 1 - Road 32 - Storm Network - Collection Pipes 150 MM - Excavation | 4d | 2026-07-12 A | 2026-07-15 A | RSZone 1Road 31Storm NetworkA42700 | 100% |  |  |  |  | Contract Price Original Scope [6322.71 SAR]; Excavator Operator [30 h]; Dump Truck Operator [30 h]; Labour [53.98 h]; Collection Pipes 150 MM [1323] | 6,322.71 | 6,322.71 | RD32 |
| RSZone 1Road 32Storm NetworkA88430 |  | Zone 1 - Road 32 - Storm Network - Collection Pipes 150 MM - Bedding | 3d | 2026-07-16 A | 2026-07-19 A | RSZone 1Road 32Storm NetworkA88420 | 100% | 2026-07-16 | 2026-07-20 |  |  | Contract Price Original Scope [3161.35 SAR]; Compactor Operator [20 h]; Equipment Operator [20 h]; Water Truck Operator [20 h]; Labour [26.99 h]; Collection Pipes 150 MM [1323] | 3,161.35 | 3,161.35 | RD32 |
| RSZone 1Road 32Storm NetworkA88440 |  | Zone 1 - Road 32 - Storm Network - Collection Pipes 150 MM - Pipe Installation | 7d | 2026-07-20 A | 2026-07-27 A | RSZone 1Road 32Storm NetworkA88430 | 100% |  |  |  |  | Contract Price Original Scope [41097.6 SAR]; Excavator Operator [40 h]; Crane Operator [40 h]; Equipment Operator [40 h]; Labour [350.87 h]; Collection Pipes 150 MM [1323] | 41,097.61 | 41,097.61 | RD32 |
| RSZone 1Road 32Storm NetworkA88450 |  | Zone 1 - Road 32 - Storm Network - Collection Pipes 150 MM - Test | 2d | 2026-11-09 | 2026-11-10 | RSZone 1Road 32Storm NetworkA88440 |  |  |  | 121.4d | 0d | Contract Price Original Scope [6322.71 SAR]; Pump Operator [20 h]; Equipment Operator [20 h]; Labour [53.98 h]; Collection Pipes 150 MM [1323] | 6,322.71 |  | RD32 |
| RSZone 1Road 32Storm NetworkA88460 |  | Zone 1 - Road 32 - Storm Network - Collection Pipes 150 MM - Backfilling | 2d | 2026-11-11 | 2026-11-12 | RSZone 1Road 32Storm NetworkA88450 |  |  |  | 121.4d | 107d | Contract Price Original Scope [6322.71 SAR]; Excavator Operator [20 h]; Compactor Operator [20 h]; Dump Truck Operator [20 h]; Water Truck Operator [20 h]; Labour [53.98 h]; Collection Pipes 150 MM [1323] | 6,322.71 |  | RD32 |
|  | 8 | **Perforated 200 mm** |  | 2025-10-19 | 2026-11-10 |  |  |  |  |  |  |  |  |  |  |
| RSZone 1Road 32Storm NetworkA51690 |  | Zone 1 - Road 32 - Storm Network - Perforated 200 mm - Excavation | 4d | 2025-10-19 A | 2025-10-22 A | RSZone 1Road 32Storm NetworkA88440 | 100% |  |  |  |  | Contract Price Original Scope [63549 SAR]; Excavator Operator [30 h]; Dump Truck Operator [30 h]; Labour [542.55 h]; Perforated 200 mm [2507] | 63,549 | 63,549 | RD32 |
| RSZone 1Road 32Storm NetworkA51700 |  | Zone 1 - Road 32 - Storm Network - Perforated 200 mm - Bedding | 3d | 2025-10-23 A | 2025-10-26 A | RSZone 1Road 32Storm NetworkA51690 | 100% | 2025-10-23 | 2025-10-27 |  |  | Contract Price Original Scope [31774.5 SAR]; Compactor Operator [20 h]; Equipment Operator [20 h]; Water Truck Operator [20 h]; Labour [271.27 h]; Perforated 200 mm [2507] | 31,774.5 | 31,774.5 | RD32 |
| RSZone 1Road 32Storm NetworkA51710 |  | Zone 1 - Road 32 - Storm Network - Perforated 200 mm - Pipe Installation | 6d | 2025-10-27 A | 2025-11-02 A | RSZone 1Road 32Storm NetworkA51700 | 100% |  |  |  |  | Contract Price Original Scope [413069 SAR]; Excavator Operator [40 h]; Crane Operator [40 h]; Equipment Operator [40 h]; Labour [3526.57 h]; Perforated 200 mm [2507] | 413,068.53 | 413,068.53 | RD32 |
| RSZone 1Road 32Storm NetworkA51730 |  | Zone 1 - Road 32 - Storm Network - Perforated 200 mm - Backfilling | 3d | 2025-11-03 A | 2025-11-05 A | RSZone 1Road 32Storm NetworkA51710 | 100% |  |  |  |  | Contract Price Original Scope [63549 SAR]; Excavator Operator [20 h]; Compactor Operator [20 h]; Dump Truck Operator [20 h]; Water Truck Operator [20 h]; Labour [542.55 h]; Perforated 200 mm [2507] | 63,549 | 63,549 | RD32 |
| RSZone 1Road 32Storm NetworkA51720 |  | Zone 1 - Road 32 - Storm Network - Perforated 200 mm - Test | 2d | 2026-11-09 | 2026-11-10 | RSZone 1Road 32Storm NetworkA51730 |  |  |  | 123.4d | 109d | Contract Price Original Scope [63549 SAR]; Pump Operator [20 h]; Equipment Operator [20 h]; Labour [542.55 h]; Perforated 200 mm [2507] | 63,549 |  | RD32 |
|  | 12 | **Inspection Chamber** |  | 2025-11-02 | 2026-11-16 |  |  |  |  |  |  |  |  |  |  |
| RSZone 1Road 32Storm NetworkA53490 |  | Zone 1 - Road 32 - Storm Network - Inspection Chamber - Excavation | 4.9d | 2025-11-02 A | 2025-11-06 A | RSZone 1Road 32Storm NetworkA51730 | 100% |  |  |  |  | Contract Price Original Scope [78770.8 SAR]; Excavator Operator [30 h]; Dump Truck Operator [30 h]; Labour [672.5 h]; Inspection Chamber [19] | 78,770.77 | 78,770.77 | RD32 |
| RSZone 1Road 32Storm NetworkA53500 |  | Zone 1 - Road 32 - Storm Network - Inspection Chamber - IC Installation | 4d | 2025-11-09 A | 2025-11-12 A | RSZone 1Road 32Storm NetworkA53490 | 100% |  |  |  |  | Contract Price Original Scope [315083 SAR]; Crane Operator [40 h]; Boom Truck Operator [40 h]; Equipment Operator [40 h]; Labour [2690.02 h]; Inspection Chamber [19] | 315,083.06 | 315,083.06 | RD32 |
| RSZone 1Road 32Storm NetworkA53520 |  | Zone 1 - Road 32 - Storm Network - Inspection Chamber - Inner Isolation | 2d | 2026-11-09 | 2026-11-10 | RSZone 1Road 32Storm NetworkA53500 |  |  |  | 118.4d | 0d | Contract Price Original Scope [52513.8 SAR]; Equipment Operator [20 h]; Labour [448.34 h]; Inspection Chamber [19] | 52,513.84 |  | RD32 |
| RSZone 1Road 32Storm NetworkA53510 |  | Zone 1 - Road 32 - Storm Network - Inspection Chamber - D.I | 3d | 2026-11-11 | 2026-11-14 | RSZone 1Road 32Storm NetworkA53520 |  |  |  | 118.4d | 0d | Contract Price Original Scope [52513.8 SAR]; Crane Operator [7 h]; Boom Truck Operator [7 h]; Equipment Operator [7 h]; Labour [448.34 h]; Inspection Chamber [19] | 52,513.84 |  | RD32 |
| RSZone 1Road 32Storm NetworkA53530 |  | Zone 1 - Road 32 - Storm Network - Inspection Chamber - Backfilling | 2d | 2026-11-15 | 2026-11-16 | RSZone 1Road 32Storm NetworkA53510 |  |  |  | 118.4d | 104d | Contract Price Original Scope [26256.9 SAR]; Excavator Operator [20 h]; Compactor Operator [20 h]; Dump Truck Operator [20 h]; Water Truck Operator [20 h]; Labour [224.17 h]; Inspection Chamber [19] | 26,256.92 |  | RD32 |
|  | 1 | **Collection Chamber** |  | 2025-11-18 | 2026-12-10 |  |  |  |  |  |  |  |  |  |  |
| RSZone 1Road 32Storm NetworkA48440 |  | Zone 1 - Road 32 - Storm Network - Collection Chamber - Excavation | 6d | 2025-11-18 A | 2025-11-24 A | RSZone 1Road 32Storm NetworkA53500 | 100% |  |  |  |  | Contract Price Original Scope [55030.8 SAR]; Excavator Operator [30 h]; Dump Truck Operator [30 h]; Labour [469.82 h]; Collection Chamber [71] | 55,030.85 | 55,030.85 | RD32 |
| RSZone 1Road 32Storm NetworkA48450 |  | Zone 1 - Road 32 - Storm Network - Collection Chamber - Installation | 2.9d | 2025-11-25 A | 2025-11-27 A | RSZone 1Road 32Storm NetworkA48440 | 100% |  |  |  |  | Contract Price Original Scope [220123 SAR]; Crane Operator [7 h]; Boom Truck Operator [7 h]; Equipment Operator [7 h]; Labour [1879.3 h]; Collection Chamber [71] | 220,123.38 | 220,123.38 | RD32 |
| RSZone 1Road 32Storm NetworkA48480 |  | Zone 1 - Road 32 - Storm Network - Collection Chamber - Backfilling | 2d | 2025-12-01 A | 2025-12-02 A | RSZone 1Road 32Storm NetworkA48450 | 100% |  |  |  |  | Contract Price Original Scope [18343.6 SAR]; Excavator Operator [20 h]; Compactor Operator [20 h]; Dump Truck Operator [20 h]; Water Truck Operator [20 h]; Labour [156.61 h]; Collection Chamber [71] | 18,343.62 | 18,343.62 | RD32 |
| RSZone 1Road 32Storm NetworkA48460-old |  | Zone 1 - Road 32 - Storm Network - Collection Chamber - D.I (old) | 131d | 2026-06-01 A | 2026-11-01 A | RSZone 1Road 32Storm NetworkA48480, RSZone 1Road 31Storm NetworkA88240-old | 100% |  |  |  |  | Contract Price Original Scope [5686.52 SAR]; Crane Operator [1.08 h]; Boom Truck Operator [1.08 h]; Equipment Operator [1.08 h]; Labour [48.55 h]; Collection Chamber [11.01] | 5,686.52 | 5,686.52 | RD32 |
| RSZone 1Road 32Storm NetworkA48460 |  | Zone 1 - Road 32 - Storm Network - Collection Chamber - D.I | 2.54d | 2026-12-06 | 2026-12-08 | RSZone 1Road 32Storm NetworkA48460-old, RSZone 1Road 31Storm NetworkA88240 |  |  |  | 94.71d | 0d | Contract Price Original Scope [31000.7 SAR]; Crane Operator [5.92 h]; Boom Truck Operator [5.92 h]; Equipment Operator [5.92 h]; Labour [264.67 h]; Collection Chamber [59.99] | 31,000.71 |  | RD32 |
| RSZone 1Road 32Storm NetworkA48470 |  | Zone 1 - Road 32 - Storm Network - Collection Chamber - Inner Isolation | 2d | 2026-12-08 | 2026-12-10 | RSZone 1Road 32Storm NetworkA48460 |  |  |  | 97.71d | 83.31d | Contract Price Original Scope [36687.2 SAR]; Equipment Operator [20 h]; Labour [313.22 h]; Collection Chamber [71] | 36,687.23 |  | RD32 |

| ID | WBS | Activity | Duration | Start | Finish | Predecessors | Complete | Planned start | Planned finish | Total float | Free float | Resources | Cost | Actual cost | MODON |
| --- | --- | --- | --- | --- | --- | --- | --- | --- | --- | --- | --- | --- | --- | --- | --- |
|  | 11 | **Gravel and Geotextile** |  | 2025-11-02 | 2025-11-04 |  |  |  |  |  |  |  |  |  |  |
| RSZone 1Road 32Storm NetworkA52730 |  | Zone 1 - Road 32 - Storm Network - Gravel and Geotextile - Installation | 3d | 2025-11-02 A | 2025-11-04 A | RSZone 1Road 32Storm NetworkA48480 | 100% |  |  |  |  | Contract Price Original Scope [294067 SAR]; Excavator Operator [7 h]; Dump Truck Operator [7 h]; Equipment Operator [7 h]; Water Truck Operator [7 h]; Labour [2510.59 h]; Gravel and Geotextile [2507] | 294,066.75 | 294,066.75 | RD32 |
|  | 4 | **Concrete Manholes on Box Culvert** |  | 2027-02-27 | 2027-03-31 |  |  |  |  |  |  |  |  |  |  |
| RSZone 1Road 32Storm NetworkA94920 |  | Zone 1 - Road 32 - Storm Network - Concrete Manholes on Box Culvert - Excavation | 3d | 2027-02-27 | 2027-03-03 | RSZone 1Road 31Storm NetworkA41090 |  |  |  | 14.4d | 0d | Contract Price Original Scope [7118.82 SAR]; Labour [60.78 h]; Concrete Manholes on Box Culvert - Manhole with a depth of 0.0-1.5 m [16] | 7,118.82 |  | RD32 |
| RSZone 1Road 32Storm NetworkA94940 |  | Zone 1 - Road 32 - Storm Network - Concrete Manholes on Box Culvert - Slab | 2d | 2027-03-04 | 2027-03-08 | RSZone 1Road 32Storm NetworkA94920 |  |  |  | 16.4d | 0d | Contract Price Original Scope [49831.8 SAR]; Labour [425.44 h]; Concrete Manholes on Box Culvert - Manhole with a depth of 0.0-1.5 m [16] | 49,831.77 |  | RD32 |
| RSZone 1Road 32Storm NetworkA94930 |  | Zone 1 - Road 32 - Storm Network - Concrete Manholes on Box Culvert - Walls | 3d | 2027-03-08 | 2027-03-14 | RSZone 1Road 32Storm NetworkA94940 |  |  |  | 16.4d | 0d | Contract Price Original Scope [28475.3 SAR]; Labour [243.11 h]; Concrete Manholes on Box Culvert - Manhole with a depth of 0.0-1.5 m [16] | 28,475.3 |  | RD32 |
| RSZone 1Road 32Storm NetworkA94960 |  | Zone 1 - Road 32 - Storm Network - Concrete Manholes on Box Culvert - Internal Isolation | 2d | 2027-03-14 | 2027-03-17 | RSZone 1Road 32Storm NetworkA94930 |  |  |  | 16.4d | 0d | Contract Price Original Scope [7118.82 SAR]; Labour [60.78 h]; Concrete Manholes on Box Culvert - Manhole with a depth of 0.0-1.5 m [16] | 7,118.82 |  | RD32 |
| RSZone 1Road 32Storm NetworkA94950 |  | Zone 1 - Road 32 - Storm Network - Concrete Manholes on Box Culvert - D.I Cover | 3d | 2027-03-18 | 2027-03-25 | RSZone 1Road 32Storm NetworkA94960 |  |  |  | 16.4d | 0d | Contract Price Original Scope [14237.6 SAR]; Labour [121.55 h]; Concrete Manholes on Box Culvert - Manhole with a depth of 0.0-1.5 m [60] | 14,237.65 |  | RD32 |
| RSZone 1Road 32Storm NetworkA94970 |  | Zone 1 - Road 32 - Storm Network - Concrete Manholes on Box Culvert - External Isolation | 3d | 2027-03-25 | 2027-03-29 | RSZone 1Road 32Storm NetworkA94950 |  |  |  | 16.4d | 0d | Contract Price Original Scope [7118.82 SAR]; Labour [60.78 h]; Concrete Manholes on Box Culvert - Manhole with a depth of 0.0-1.5 m [16] | 7,118.82 |  | RD32 |
| RSZone 1Road 32Storm NetworkA94980 |  | Zone 1 - Road 32 - Storm Network - Concrete Manholes on Box Culvert - Backfilling | 2d | 2027-03-29 | 2027-03-31 | RSZone 1Road 32Storm NetworkA94970 |  |  |  | 16.4d | 2d | Contract Price Original Scope [7118.82 SAR]; Excavator Operator [20 h]; Compactor Operator [20 h]; Dump Truck Operator [20 h]; Water Truck Operator [20 h]; Labour [60.78 h]; Concrete Manholes on Box Culvert - Manhole with a depth of 0.0-1.5 m [16] | 7,118.82 |  | RD32 |
|  | 2 | **Potable Network** |  | 2025-11-25 | 2026-11-16 |  |  |  |  |  |  |  |  |  |  |
|  | 1 | **Buried Valves** |  | 2025-11-25 | 2026-11-14 |  |  |  |  |  |  |  |  |  |  |
| RSZone 1Road 32Potable NetworkA56320 |  | Zone 1 - Road 32 - Potable Network - Buried Valves - Excavation | 5d | 2025-11-25 A | 2025-11-30 A | RSZone 1Road 31Potable NetworkA55670 | 100% |  |  |  |  | Contract Price Original Scope [320.38 SAR]; Excavator Operator [30 h]; Dump Truck Operator [30 h]; Labour [2.74 h]; Buried Valves [2] | 320.38 | 320.38 | RD32 |
| RSZone 1Road 32Potable NetworkA56330 |  | Zone 1 - Road 32 - Potable Network - Buried Valves - Installation | 2d | 2025-12-01 A | 2025-12-02 A | RSZone 1Road 32Potable NetworkA56320 | 100% |  |  |  |  | Contract Price Original Scope [4164.93 SAR]; Labour [35.56 h]; Buried Valves [2] | 4,164.93 | 4,164.93 | RD32 |
| RSZone 1Road 32Potable NetworkA56350 |  | Zone 1 - Road 32 - Potable Network - Buried Valves - Test | 2d | 2025-12-02 A | 2025-12-03 A | RSZone 1Road 32Potable NetworkA56330 | 100% |  |  |  |  | Contract Price Original Scope [1281.52 SAR]; Pump Operator [20 h]; Equipment Operator [20 h]; Labour [10.94 h]; Buried Valves [2] | 1,281.52 | 1,281.52 | RD32 |
| RSZone 1Road 32Potable NetworkA56340 |  | Zone 1 - Road 32 - Potable Network - Buried Valves - Surface Box | 3d | 2026-11-09 | 2026-11-11 | RSZone 1Road 32Potable NetworkA56350 |  |  |  | 96.4d | 0d | Labour; Buried Valves [2] |  |  | RD32 |
| RSZone 1Road 32Potable NetworkA56360 |  | Zone 1 - Road 32 - Potable Network - Buried Valves - Backfilling | 2d | 2026-11-12 | 2026-11-14 | RSZone 1Road 32Potable NetworkA56340 |  |  |  | 96.4d | 96.2d | Contract Price Original Scope [640.76 SAR]; Excavator Operator [20 h]; Compactor Operator [20 h]; Dump Truck Operator [20 h]; Water Truck Operator [20 h]; Labour [5.47 h]; Buried Valves [2] | 640.76 |  | RD32 |
|  | 7 | **FIRE HYDRANT** |  | 2025-12-07 | 2026-11-16 |  |  |  |  |  |  |  |  |  |  |
| RSZone 1Road 32Potable NetworkA58020 |  | Zone 1 - Road 32 - Potable Network - FIRE HYDRANT - Excavation | 4.9d | 2025-12-07 A | 2025-12-11 A | RSZone 1Road 32Potable NetworkA56350 | 100% |  |  |  |  | Contract Price Original Scope [12485.5 SAR]; Excavator Operator [30 h]; Dump Truck Operator [30 h]; Labour [106.6 h]; Fire Hydrant [9] | 12,485.54 | 12,485.54 | RD32 |
| RSZone 1Road 32Potable NetworkA58030 |  | Zone 1 - Road 32 - Potable Network - FIRE HYDRANT - Buried Gate Valve Installation | 4d | 2025-12-14 A | 2025-12-17 A | RSZone 1Road 32Potable NetworkA58020 | 100% |  |  |  |  | Labour; Fire Hydrant [9] |  |  | RD32 |
| RSZone 1Road 32Potable NetworkA58040 |  | Zone 1 - Road 32 - Potable Network - FIRE HYDRANT - Fire Hydrant Installation | 5d | 2025-12-18 A | 2025-12-23 A | RSZone 1Road 32Potable NetworkA58030 | 100% | 2025-12-18 | 2025-12-24 |  |  | Contract Price Original Scope [91144.4 SAR]; Labour [778.14 h]; Fire Hydrant [9] | 91,144.43 | 91,144.43 | RD32 |
| RSZone 1Road 32Potable NetworkA58050 |  | Zone 1 - Road 32 - Potable Network - FIRE HYDRANT - Surface Box | 3d | 2026-11-09 | 2026-11-11 | RSZone 1Road 32Potable NetworkA58040 |  |  |  | 94.4d | 0d | Labour; Fire Hydrant [9] |  |  | RD32 |
| RSZone 1Road 32Potable NetworkA58060 |  | Zone 1 - Road 32 - Potable Network - FIRE HYDRANT - Test | 2d | 2026-11-12 | 2026-11-14 | RSZone 1Road 32Potable NetworkA58050 |  |  |  | 94.4d | 0d | Contract Price Original Scope [8739.88 SAR]; Pump Operator [20 h]; Equipment Operator [20 h]; Labour [74.62 h]; Fire Hydrant [9] | 8,739.88 |  | RD32 |
| RSZone 1Road 32Potable NetworkA58070 |  | Zone 1 - Road 32 - Potable Network - FIRE HYDRANT - Backfilling | 2d | 2026-11-15 | 2026-11-16 | RSZone 1Road 32Potable NetworkA58060 |  |  |  | 94.4d | 94.2d | Contract Price Original Scope [12485.5 SAR]; Excavator Operator [20 h]; Compactor Operator [20 h]; Dump Truck Operator [20 h]; Water Truck Operator [20 h]; Labour [106.6 h]; Fire Hydrant [9] | 12,485.54 |  | RD32 |

| ID | WBS | Activity | Duration | Start | Finish | Predecessors | Complete | Total float | Free float | Resources | Cost | Actual cost | MODON |
| --- | --- | --- | --- | --- | --- | --- | --- | --- | --- | --- | --- | --- | --- |
|  | 5 | **Lateral Irrigation Network** |  | 2025-07-21 | 2026-11-18 |  |  |  |  |  |  |  |  |
|  | 6 | **HDPE Pipes** |  | 2025-07-21 | 2026-11-12 |  |  |  |  |  |  |  |  |
|  | 2 | **HDPE Pipes 125 MM** |  | 2025-07-21 | 2026-11-12 |  |  |  |  |  |  |  |  |
| RSZone 1Road 32Irrigation NetworkA27590 |  | Zone 1 - Road 32 - Lateral Irrigation Network - HDPE Pipes 125 MM - Excavation | 3.9d | 2025-07-21 A | 2025-07-24 A | RSZone 1Road 31Irrigation NetworkA90260 | 100% |  |  | Contract Price Original Scope [3164.96 SAR]; Excavator Operator [30 h]; Dump Truck Operator [30 h]; Labour [27.02 h]; HDPE Pipes 125 MM [228] | 3,164.96 | 3,164.96 | RD32 |
| RSZone 1Road 32Irrigation NetworkA27600 |  | Zone 1 - Road 32 - Lateral Irrigation Network - HDPE Pipes 125 MM - Pipe Installation | 4d | 2025-07-27 A | 2025-07-30 A | RSZone 1Road 32Irrigation NetworkA27590 | 100% |  |  | Contract Price Original Scope [22154.7 SAR]; Excavator Operator [40 h]; Crane Operator [40 h]; Equipment Operator [40 h]; Labour [189.15 h]; HDPE Pipes 125 MM [228] | 22,154.69 | 22,154.69 | RD32 |
| RSZone 1Road 32Irrigation NetworkA27610 |  | Zone 1 - Road 32 - Lateral Irrigation Network - HDPE Pipes 125 MM - Test | 2d | 2026-11-09 | 2026-11-10 | RSZone 1Road 32Irrigation NetworkA27600 |  | 97.4d | 0d | Contract Price Original Scope [3164.96 SAR]; Pump Operator [20 h]; Equipment Operator [20 h]; Labour [27.02 h]; HDPE Pipes 125 MM [228] | 3,164.96 |  | RD32 |
| RSZone 1Road 32Irrigation NetworkA27620 |  | Zone 1 - Road 32 - Lateral Irrigation Network - HDPE Pipes 125 MM - Backfilling | 2d | 2026-11-11 | 2026-11-12 | RSZone 1Road 32Irrigation NetworkA27610 |  | 97.4d | 96.76d | Contract Price Original Scope [3164.96 SAR]; Excavator Operator [20 h]; Compactor Operator [20 h]; Dump Truck Operator [20 h]; Water Truck Operator [20 h]; Labour [27.02 h]; HDPE Pipes 125 MM [228] | 3,164.96 |  | RD32 |
|  | 1 | **HDPE Fitting** |  | 2025-07-23 | 2026-11-11 |  |  |  |  |  |  |  |  |
|  | 2 | **Tees** |  | 2025-07-23 | 2025-07-24 |  |  |  |  |  |  |  |  |
| RSZone 1Road 32Irrigation NetworkA27770 |  | Zone 1 - Road 32 - Lateral Irrigation Network - Tees - Installation | 1.9d | 2025-07-23 A | 2025-07-24 A | RSZone 1Road 32Irrigation NetworkA27600 | 100% |  |  | Contract Price Original Scope [12288.5 SAR]; Labour [104.91 h]; Fittings - Tees (all sizes) [8] | 12,288.48 | 12,288.48 | RD32 |
|  | 3 | **End Cap** |  | 2026-05-10 | 2026-11-10 |  |  |  |  |  |  |  |  |
| RSZone 1Road 32Irrigation NetworkA27870- |  | Zone 1 - Road 32 - Lateral Irrigation Network - End Cap - Installation (old) | 150d | 2026-05-10 A | 2026-11-01 A | RSZone 1Road 32Irrigation NetworkA27770 | 100% |  |  | Contract Price Original Scope [1867.95 SAR]; Labour [15.95 h]; Fittings - End Caps (all sizes) [5] | 1,867.95 | 1,867.95 | RD32 |
| RSZone 1Road 32Irrigation NetworkA27870- |  | Zone 1 - Road 32 - Lateral Irrigation Network - End Cap - Installation (old) | 1.12d | 2026-11-09 | 2026-11-10 | RSZone 1Road 32Irrigation NetworkA27870- |  | 98.78d | 0d | Contract Price Original Scope [1120.77 SAR]; Labour [9.57 h]; Fittings - End Caps (all sizes) [3] | 1,120.77 |  | RD32 |
|  | 4 | **Reducer** |  | 2026-05-10 | 2026-11-11 |  |  |  |  |  |  |  |  |
| RSZone 1Road 32Irrigation NetworkA27900- |  | Zone 1 - Road 32 - Lateral Irrigation Network - Reducer - Installation (old) | 150d | 2026-05-10 A | 2026-11-01 A | RSZone 1Road 32Irrigation NetworkA27870- | 100% |  |  | Contract Price Original Scope [6866.52 SAR]; Labour [58.62 h]; Fittings - Reducers (Connectors) (all sizes) [5] | 6,866.52 | 6,866.52 | RD32 |
| RSZone 1Road 32Irrigation NetworkA27900- |  | Zone 1 - Road 32 - Lateral Irrigation Network - Reducer - Installation (old) | 1.5d | 2026-11-10 | 2026-11-11 | RSZone 1Road 32Irrigation NetworkA27900-, RSZone 1Road 32Irrigation NetworkA27870- |  | 98.78d | 98.14d | Contract Price Original Scope [6866.52 SAR]; Labour [58.62 h]; Fittings - Reducers (Connectors) (all sizes) [5] | 6,866.52 |  | RD32 |
|  | 11 | **Valves** |  | 2026-05-11 | 2026-11-18 |  |  |  |  |  |  |  |  |
|  | 1 | **Buried Valves** |  | 2026-05-11 | 2026-11-18 |  |  |  |  |  |  |  |  |
| RSZone 1Road 32Irrigation NetworkA27340- |  | Zone 1 - Road 32 - Lateral Irrigation Network - Buried Valves - Excavation (old) | 149d | 2026-05-11 A | 2026-11-01 A | RSZone 1Road 32Irrigation NetworkA27770 | 100% |  |  | Contract Price Original Scope [470.8 SAR]; Excavator Operator [26.25 h]; Dump Truck Operator [26.25 h]; Labour [4.02 h]; Buried Valves [7] | 470.8 | 470.8 | RD32 |
| RSZone 1Road 32Irrigation NetworkA27920- |  | Zone 1 - Road 32 - Lateral Irrigation Network - Buried Valves - Installation (old) | 148d | 2026-05-12 A | 2026-11-01 A | RSZone 1Road 32Irrigation NetworkA27340- | 100% |  |  | Contract Price Original Scope [6120.35 SAR]; Labour [52.25 h]; Buried Valves [7] | 6,120.35 | 6,120.35 | RD32 |
| RSZone 1Road 32Irrigation NetworkA27340- |  | Zone 1 - Road 32 - Lateral Irrigation Network - Buried Valves - Excavation (old) | 1d | 2026-11-09 | 2026-11-09 | RSZone 1Road 32Irrigation NetworkA27340- |  | 92.4d | 0d | Contract Price Original Scope [67.26 SAR]; Excavator Operator [3.75 h]; Dump Truck Operator [3.75 h]; Labour [0.57 h]; Buried Valves [1] | 67.26 |  | RD32 |
| RSZone 1Road 32Irrigation NetworkA27920- |  | Zone 1 - Road 32 - Lateral Irrigation Network - Buried Valves - Installation (old) | 1d | 2026-11-10 | 2026-11-10 | RSZone 1Road 32Irrigation NetworkA27920-, RSZone 1Road 32Irrigation NetworkA27340- |  | 92.4d | 0d | Contract Price Original Scope [874.34 SAR]; Labour [7.46 h]; Buried Valves [1] | 874.34 |  | RD32 |
| RSZone 1Road 32Irrigation NetworkA27930 |  | Zone 1 - Road 32 - Lateral Irrigation Network - Buried Valves - Surface Box | 3d | 2026-11-11 | 2026-11-14 | RSZone 1Road 32Irrigation NetworkA27920-, RSZone 1Road 32Irrigation NetworkA27340- |  | 92.4d | 0d | Labour; Buried Valves [8] |  |  | RD32 |
| RSZone 1Road 32Irrigation NetworkA27940 |  | Zone 1 - Road 32 - Lateral Irrigation Network - Buried Valves - Test | 2d | 2026-11-15 | 2026-11-16 | RSZone 1Road 32Irrigation NetworkA27930 |  | 92.4d | 0d | Contract Price Original Scope [2152.21 SAR]; Pump Operator [20 h]; Equipment Operator [20 h]; Labour [18.37 h]; Buried Valves [8] | 2,152.21 |  | RD32 |
| RSZone 1Road 32Irrigation NetworkA27950 |  | Zone 1 - Road 32 - Lateral Irrigation Network - Buried Valves - Backfilling | 2d | 2026-11-17 | 2026-11-18 | RSZone 1Road 32Irrigation NetworkA27940 |  | 92.4d | 91.76d | Contract Price Original Scope [1076.11 SAR]; Excavator Operator [20 h]; Compactor Operator [20 h]; Dump Truck Operator [20 h]; Water Truck Operator [20 h]; Labour [9.19 h]; Buried Valves [8] | 1,076.11 |  | RD32 |

| ID | WBS | Activity | Duration | Start | Finish | Predecessors | Complete | Planned start | Planned finish | Total float | Free float | Resources | Cost | Actual cost | MODON |
| --- | --- | --- | --- | --- | --- | --- | --- | --- | --- | --- | --- | --- | --- | --- | --- |
|  | 3 | **Bedding** |  | 2025-07-24 | 2025-07-28 |  |  |  |  |  |  |  |  |  |  |
| RSZone 1Road 32Irrigation NetworkA28480 |  | Zone 1 - Road 32 - Lateral Irrigation Network - Bedding - Bedding | 4d | 2025-07-24 A | 2025-07-28 A | RSZone 1Road 32Irrigation NetworkA27770 | 100% | 2025-07-24 | 2025-07-29 |  |  | Contract Price Original Scope [5871.67 SAR]; Compactor Operator [20 h]; Equipment Operator [20 h]; Water Truck Operator [20 h]; Labour [50.13 h]; Bedding [228] | 5,871.67 | 5,871.67 | RD32 |
|  | 4 | **Thrust Block** |  | 2025-07-27 | 2025-07-29 |  |  |  |  |  |  |  |  |  |  |
| RSZone 1Road 32Irrigation NetworkA28490 |  | Zone 1 - Road 32 - Lateral Irrigation Network - Thrust Block - Thrust Block | 3d | 2025-07-27 A | 2025-07-29 A | RSZone 1Road 32Irrigation NetworkA28480 | 100% |  |  |  |  | Contract Price Original Scope [8174.08 SAR]; Crane Operator [12 h]; Pump Operator [12 h]; Equipment Operator [12 h]; Labour [69.79 h]; Thrust Blocks [8] | 8,174.08 | 8,174.08 | RD32 |
|  | 12 | **Telecom Network** |  | 2025-12-10 | 2026-11-19 |  |  |  |  |  |  |  |  |  |  |
|  | 1 | **Telecom Pipe** |  | 2026-07-12 | 2026-11-12 |  |  |  |  |  |  |  |  |  |  |
| RSZone 1Road 32Telecom NetworkA62880-old |  | Zone 1 - Road 32 - Telecom Network - Telecom Pipe - Excavation (old) | 96d | 2026-07-12 A | 2026-11-01 A | RSZone 1Road 31Telecom NetworkA62400-old | 100% |  |  |  |  | Contract Price Original Scope [27463 SAR]; Excavator Operator [27.97 h]; Dump Truck Operator [27.97 h]; Labour [234.47 h]; Telecom Pipe [1274.35] | 27,463.04 | 27,463.04 | RD32 |
| RSZone 1Road 32Telecom NetworkA62890-old |  | Zone 1 - Road 32 - Telecom Network - Telecom Pipe - Concrete Pouring (old) | 95d | 2026-07-13 A | 2026-11-01 A | RSZone 1Road 32Telecom NetworkA62880-old | 100% |  |  |  |  | Contract Price Original Scope [192206 SAR]; Crane Operator [12.12 h]; Pump Operator [12.12 h]; Equipment Operator [12.12 h]; Labour [1640.96 h]; Telecom Pipe [1274.11] | 192,206.04 | 192,206.04 | RD32 |
| RSZone 1Road 32Telecom NetworkA62910-old |  | Zone 1 - Road 32 - Telecom Network - Telecom Pipe - Backfilling (old) | 94d | 2026-07-14 A | 2026-11-01 A | RSZone 1Road 32Telecom NetworkA62890-old | 100% |  |  |  |  | Contract Price Original Scope [27446.7 SAR]; Excavator Operator [18.63 h]; Compactor Operator [18.63 h]; Dump Truck Operator [18.63 h]; Water Truck Operator [18.63 h]; Labour [234.33 h]; Telecom Pipe [1273.59] | 27,446.68 | 27,446.68 | RD32 |
| RSZone 1Road 32Telecom NetworkA62880 |  | Zone 1 - Road 32 - Telecom Network - Telecom Pipe - Excavation | 1d | 2026-11-02 A | 2026-11-05 A | RSZone 1Road 32Telecom NetworkA62880-old, RSZone 1Road 31Telecom NetworkA62400-old | 100% | 2026-11-04 | 2026-11-05 |  |  | Contract Price Original Scope [1996.72 SAR]; Excavator Operator [2.03 h]; Dump Truck Operator [2.03 h]; Labour [17.05 h]; Telecom Pipe [92.65] | 1,996.72 | 1,996.72 | RD32 |
| RSZone 1Road 32Telecom NetworkA62890 |  | Zone 1 - Road 32 - Telecom Network - Telecom Pipe - Concrete Pouring | 1d | 2026-11-09 | 2026-11-09 | RSZone 1Road 32Telecom NetworkA62890-old, RSZone 1Road 32Telecom NetworkA62880 |  |  |  | 102.4d | 0d | Contract Price Original Scope [14012.3 SAR]; Crane Operator [0.88 h]; Pump Operator [0.88 h]; Equipment Operator [0.88 h]; Labour [119.63 h]; Telecom Pipe [92.89] | 14,012.27 |  | RD32 |
| RSZone 1Road 32Telecom NetworkA62910 |  | Zone 1 - Road 32 - Telecom Network - Telecom Pipe - Backfilling | 1d | 2026-11-10 | 2026-11-10 | RSZone 1Road 32Telecom NetworkA62910-old, RSZone 1Road 32Telecom NetworkA62890 |  |  |  | 102.4d | 0d | Contract Price Original Scope [2013.08 SAR]; Excavator Operator [1.37 h]; Compactor Operator [1.37 h]; Dump Truck Operator [1.37 h]; Water Truck Operator [1.37 h]; Labour [17.19 h]; Telecom Pipe [93.41] | 2,013.08 |  | RD32 |
| RSZone 1Road 32Telecom NetworkA62900 |  | Zone 1 - Road 32 - Telecom Network - Telecom Pipe - Test | 2d | 2026-11-11 | 2026-11-12 | RSZone 1Road 32Telecom NetworkA62890, RSZone 1Road 32Telecom NetworkA62910 |  |  |  | 102.4d | 102d | Contract Price Original Scope [29459.8 SAR]; Pump Operator [20 h]; Equipment Operator [20 h]; Labour [251.51 h]; Telecom Pipe [1367] | 29,459.76 |  | RD32 |
|  | 12 | **Telecom Duct** |  | 2025-12-10 | 2026-11-12 |  |  |  |  |  |  |  |  |  |  |
| RSZone 1Road 32Telecom NetworkA67720 |  | Zone 1 - Road 32 - Telecom Network - Telecom Duct - Excavation | 4d | 2025-12-10 A | 2025-12-14 A | RSZone 1Road 30Telecom NetworkA66770 | 100% |  |  |  |  | Contract Price Original Scope [1654.42 SAR]; Excavator Operator [30 h]; Dump Truck Operator [30 h]; Labour [14.12 h]; Telecom Duct (Road Crossing) [76] | 1,654.42 | 1,654.42 | RD32 |
| RSZone 1Road 32Telecom NetworkA67730 |  | Zone 1 - Road 32 - Telecom Network - Telecom Duct - Concrete Pouring | 3d | 2025-12-15 A | 2025-12-17 A | RSZone 1Road 32Telecom NetworkA67720 | 100% |  |  |  |  | Contract Price Original Scope [23161.9 SAR]; Crane Operator [14 h]; Pump Operator [14 h]; Equipment Operator [14 h]; Labour [197.74 h]; Telecom Duct (Road Crossing) [76] | 23,161.92 | 23,161.92 | RD32 |
| RSZone 1Road 32Telecom NetworkA67740 |  | Zone 1 - Road 32 - Telecom Network - Telecom Duct - Test | 2d | 2026-11-09 | 2026-11-10 | RSZone 1Road 32Telecom NetworkA67730 |  |  |  | 102.4d | 0d | Contract Price Original Scope [3308.85 SAR]; Pump Operator [20 h]; Equipment Operator [20 h]; Labour [28.25 h]; Telecom Duct (Road Crossing) [76] | 3,308.85 |  | RD32 |
| RSZone 1Road 32Telecom NetworkA67750 |  | Zone 1 - Road 32 - Telecom Network - Telecom Duct - Backfilling | 2d | 2026-11-11 | 2026-11-12 | RSZone 1Road 32Telecom NetworkA67740 |  |  |  | 102.4d | 102d | Contract Price Original Scope [4963.27 SAR]; Excavator Operator [20 h]; Compactor Operator [20 h]; Dump Truck Operator [20 h]; Water Truck Operator [20 h]; Labour [42.37 h]; Telecom Duct (Road Crossing) [76] | 4,963.27 |  | RD32 |
|  | 2 | **TELECOM MANHOLE** |  | 2026-07-23 | 2026-11-19 |  |  |  |  |  |  |  |  |  |  |
| RSZone 1Road 32Telecom NetworkA68960-old |  | Zone 1 - Road 32 - Telecom Network - TELECOM MANHOLE - Manhole Installation (old) | 86d | 2026-07-23 A | 2026-11-01 A | RSZone 1Road 31Telecom NetworkA68840-old | 100% | 2026-07-23 | 2026-11-02 |  |  | Contract Price Original Scope [85546 SAR]; Crane Operator [13.3 h]; Boom Truck Operator [13.3 h]; Equipment Operator [13.3 h]; Labour [730.35 h]; Telecom Manhole [5.7] | 85,546 | 85,546 | RD32 |
| RSZone 1Road 32Telecom NetworkA68960 |  | Zone 1 - Road 32 - Telecom Network - TELECOM MANHOLE - Manhole Installation | 1d | 2026-11-19 | 2026-11-19 | RSZone 1Road 32Telecom NetworkA68960-old, RSZone 1Road 31Telecom NetworkA68840 |  |  |  | 76.4d | 0d | Contract Price Original Scope [4502.42 SAR]; Crane Operator [0.7 h]; Boom Truck Operator [0.7 h]; Equipment Operator [0.7 h]; Labour [38.44 h]; Telecom Manhole [0.3] | 4,502.42 |  | RD32 |
|  | 12 | **Zone 2** |  | 2025-12-11 | 2027-04-03 |  |  |  |  |  |  |  |  |  |  |
|  | 2 | **Road 1** |  | 2025-12-15 | 2027-01-19 |  |  |  |  |  |  |  |  |  |  |
|  | 9 | **Storm Network** |  | 2026-01-21 | 2026-12-14 |  |  |  |  |  |  |  |  |  |  |
|  | 1 | **Perforated 200 mm** |  | 2026-02-02 | 2026-11-10 |  |  |  |  |  |  |  |  |  |  |
| RSZone 2Road 01Storm NetworkA74110 |  | Zone 2 - Road 1 - Storm Network - Perforated 200 mm - Excavation | 3.9d | 2026-02-02 A | 2026-02-05 A | RSZone 1Road 32Storm NetworkA52730 | 100% |  |  |  |  | Contract Price Original Scope [103448 SAR]; Excavator Operator [30 h]; Dump Truck Operator [30 h]; Labour [883.18 h]; Perforated 200 mm [4081] | 103,447.74 | 103,447.74 | RD1 |
| RSZone 2Road 01Storm NetworkA74120 |  | Zone 2 - Road 1 - Storm Network - Perforated 200 mm - Bedding | 3d | 2026-02-08 A | 2026-02-10 A | RSZone 2Road 01Storm NetworkA74110 | 100% |  |  |  |  | Contract Price Original Scope [51723.9 SAR]; Compactor Operator [20 h]; Equipment Operator [20 h]; Water Truck Operator [20 h]; Labour [441.59 h]; Perforated 200 mm [4081] | 51,723.87 | 51,723.87 | RD1 |
| RSZone 2Road 01Storm NetworkA74130 |  | Zone 2 - Road 1 - Storm Network - Perforated 200 mm - Pipe Installation | 4d | 2026-02-11 A | 2026-02-15 A | RSZone 2Road 01Storm NetworkA74120 | 100% |  |  |  |  | Contract Price Original Scope [672410 SAR]; Excavator Operator [40 h]; Crane Operator [40 h]; Equipment Operator [40 h]; Labour [5740.69 h]; Perforated 200 mm [4081] | 672,410.32 | 672,410.32 | RD1 |
| RSZone 2Road 01Storm NetworkA74150 |  | Zone 2 - Road 1 - Storm Network - Perforated 200 mm - Backfilling | 3d | 2026-02-16 A | 2026-02-18 A | RSZone 2Road 01Storm NetworkA74130 | 100% |  |  |  |  | Contract Price Original Scope [103448 SAR]; Excavator Operator [20 h]; Compactor Operator [20 h]; Dump Truck Operator [20 h]; Water Truck Operator [20 h]; Labour [883.18 h]; Perforated 200 mm [4081] | 103,447.74 | 103,447.74 | RD1 |
| RSZone 2Road 01Storm NetworkA74140 |  | Zone 2 - Road 1 - Storm Network - Perforated 200 mm - Test | 2d | 2026-11-09 | 2026-11-10 | RSZone 2Road 01Storm NetworkA74150 |  |  |  | 123.4d | 109d | Contract Price Original Scope [103448 SAR]; Pump Operator [20 h]; Equipment Operator [20 h]; Labour [883.18 h]; Perforated 200 mm [4081] | 103,447.74 |  | RD1 |

| ID | WBS | Activity | Duration | Start | Finish | Predecessors | Complete | Planned start | Planned finish | Total float | Free float | Resources | Cost | Actual cost | MODON |
| --- | --- | --- | --- | --- | --- | --- | --- | --- | --- | --- | --- | --- | --- | --- | --- |
|  | 2 | **Gullies & Catchbasin Pipes** |  | 2026-01-21 | 2026-11-12 |  |  |  |  |  |  |  |  |  |  |
| RSZone 2Road 01Storm NetworkA72960 |  | Zone 2 - Road 1 - Storm Network - Gullies & Catchbasin Pipes - Excavation | 6d | 2026-01-21 A | 2026-01-27 A | RSZone 2Road 01Storm NetworkA74150 | 100% |  |  |  |  | Contract Price Original Scope [56889.2 SAR]; Excavator Operator [30 h]; Dump Truck Operator [30 h]; Labour [485.69 h]; Gullies & Catchbasin Pipes (300 mm) [1420] | 56,889.22 | 56,889.22 | RD1 |
| RSZone 2Road 01Storm NetworkA72970 |  | Zone 2 - Road 1 - Storm Network - Gullies & Catchbasin Pipes - Bedding | 4d | 2026-01-28 A | 2026-02-01 A | RSZone 2Road 01Storm NetworkA72960 | 100% |  |  |  |  | Contract Price Original Scope [171066 SAR]; Compactor Operator [20 h]; Equipment Operator [20 h]; Water Truck Operator [20 h]; Labour [1460.47 h]; Gullies & Catchbasin Pipes - Bedding [1420] | 171,065.54 | 171,065.54 | RD1 |
| RSZone 2Road 01Storm NetworkA72980 |  | Zone 2 - Road 1 - Storm Network - Gullies & Catchbasin Pipes - Pipe Installation | 6d | 2026-02-02 A | 2026-02-08 A | RSZone 2Road 01Storm NetworkA72970 | 100% |  |  |  |  | Contract Price Original Scope [398225 SAR]; Excavator Operator [40 h]; Crane Operator [40 h]; Equipment Operator [40 h]; Labour [3399.83 h]; Gullies & Catchbasin Pipes (300 mm) [1420] | 398,224.51 | 398,224.51 | RD1 |
| RSZone 2Road 01Storm NetworkA72990 |  | Zone 2 - Road 1 - Storm Network - Gullies & Catchbasin Pipes - Test | 2d | 2026-11-09 | 2026-11-10 | RSZone 2Road 01Storm NetworkA72980 |  |  |  | 121.4d | 0d | Contract Price Original Scope [56889.2 SAR]; Pump Operator [20 h]; Equipment Operator [20 h]; Labour [485.69 h]; Gullies & Catchbasin Pipes (300 mm) [1420] | 56,889.22 |  | RD1 |
| RSZone 2Road 01Storm NetworkA73000 |  | Zone 2 - Road 1 - Storm Network - Gullies & Catchbasin Pipes - Backfilling | 2d | 2026-11-11 | 2026-11-12 | RSZone 2Road 01Storm NetworkA72990 |  |  |  | 121.4d | 107d | Contract Price Original Scope [56889.2 SAR]; Excavator Operator [20 h]; Compactor Operator [20 h]; Dump Truck Operator [20 h]; Water Truck Operator [20 h]; Labour [485.69 h]; Gullies & Catchbasin Pipes (300 mm) [1420] | 56,889.22 |  | RD1 |
|  | 3 | **Inspection Chamber** |  | 2026-07-29 | 2026-12-14 |  |  |  |  |  |  |  |  |  |  |
| RSZone 2Road 01Storm NetworkA74560-old |  | Zone 2 - Road 1 - Storm Network - Inspection Chamber - Excavation (old) | 81d | 2026-07-29 A | 2026-11-01 A | RSZone 1Road 32Storm NetworkA48460-old | 100% |  |  |  |  | Contract Price Original Scope [186576 SAR]; Excavator Operator [29.35 h]; Dump Truck Operator [29.35 h]; Labour [1592.89 h]; Inspection Chamber [45] | 186,576.16 | 186,576.16 | RD1 |
| RSZone 2Road 01Storm NetworkA74570-old |  | Zone 2 - Road 1 - Storm Network - Inspection Chamber - IC Installation (old) | 80d | 2026-07-30 A | 2026-11-01 A | RSZone 2Road 01Storm NetworkA74560-old | 100% | 2026-07-30 | 2026-11-02 |  |  | Contract Price Original Scope [746305 SAR]; Crane Operator [39.13 h]; Boom Truck Operator [39.13 h]; Equipment Operator [39.13 h]; Labour [6371.56 h]; Inspection Chamber [45] | 746,304.64 | 746,304.64 | RD1 |
| RSZone 2Road 01Storm NetworkA74560 |  | Zone 2 - Road 1 - Storm Network - Inspection Chamber - Excavation | 1d | 2026-11-04 A | 2026-11-08 A | RSZone 2Road 01Storm NetworkA74560-old, RSZone 1Road 32Storm NetworkA48460-old | 100% | 2026-12-03 | 2026-12-05 |  |  | Contract Price Original Scope [4132.01 SAR]; Excavator Operator [0.65 h]; Dump Truck Operator [0.65 h]; Labour [35.28 h]; Inspection Chamber [1] | 4,132.01 | 4,132.01 | RD1 |
| RSZone 2Road 01Storm NetworkA74570 |  | Zone 2 - Road 1 - Storm Network - Inspection Chamber - IC Installation | 1d | 2026-11-04 A | 2026-11-08 A | RSZone 2Road 01Storm NetworkA74570-old, RSZone 2Road 01Storm NetworkA74560 | 100% | 2026-12-05 | 2026-12-06 |  |  | Contract Price Original Scope [16528 SAR]; Crane Operator [0.87 h]; Boom Truck Operator [0.87 h]; Equipment Operator [0.87 h]; Labour [141.11 h]; Inspection Chamber [1] | 16,528.04 | 16,528.04 | RD1 |
| RSZone 2Road 01Storm NetworkA74590 |  | Zone 2 - Road 1 - Storm Network - Inspection Chamber - Inner Isolation | 2d | 2026-11-09 | 2026-11-10 | RSZone 2Road 01Storm NetworkA74570 |  |  |  | 118.4d | 23.69d | Contract Price Original Scope [127139 SAR]; Equipment Operator [20 h]; Labour [1085.45 h]; Inspection Chamber [46] | 127,138.78 |  | RD1 |
| RSZone 2Road 01Storm NetworkA74580 |  | Zone 2 - Road 1 - Storm Network - Inspection Chamber - D.I | 3d | 2026-12-08 | 2026-12-12 | RSZone 2Road 01Storm NetworkA74590, RSZone 2Road 01Storm NetworkA74560, RSZone 1Road 32Storm NetworkA48460 |  |  |  | 94.71d | 0d | Contract Price Original Scope [127139 SAR]; Crane Operator [7 h]; Boom Truck Operator [7 h]; Equipment Operator [7 h]; Labour [1085.45 h]; Inspection Chamber [46] | 127,138.78 |  | RD1 |
| RSZone 2Road 01Storm NetworkA74600 |  | Zone 2 - Road 1 - Storm Network - Inspection Chamber - Backfilling | 2d | 2026-12-12 | 2026-12-14 | RSZone 2Road 01Storm NetworkA74580 |  |  |  | 94.71d | 80.31d | Contract Price Original Scope [63569.4 SAR]; Excavator Operator [20 h]; Compactor Operator [20 h]; Dump Truck Operator [20 h]; Water Truck Operator [20 h]; Labour [542.72 h]; Inspection Chamber [46] | 63,569.39 |  | RD1 |
|  | 5 | **Catch Basins** |  | 2026-01-26 | 2026-11-16 |  |  |  |  |  |  |  |  |  |  |
| RSZone 2Road 01Storm NetworkA73210 |  | Zone 2 - Road 1 - Storm Network - Catch Basins - Excavation | 3d | 2026-01-26 A | 2026-01-28 A | RSZone 2Road 01Storm NetworkA72980 | 100% |  |  |  |  | Contract Price Original Scope [79205.9 SAR]; Excavator Operator [30 h]; Dump Truck Operator [30 h]; Labour [676.22 h]; Catch Basins [23] | 79,205.92 | 79,205.92 | RD1 |
| RSZone 2Road 01Storm NetworkA73220 |  | Zone 2 - Road 1 - Storm Network - Catch Basins - Installation | 3d | 2026-01-29 A | 2026-02-01 A | RSZone 2Road 01Storm NetworkA73210 | 100% | 2026-01-29 | 2026-02-02 |  |  | Contract Price Original Scope [316824 SAR]; Crane Operator [7 h]; Boom Truck Operator [7 h]; Equipment Operator [7 h]; Labour [2704.88 h]; Catch Basins [23] | 316,823.67 | 316,823.67 | RD1 |
| RSZone 2Road 01Storm NetworkA73230 |  | Zone 2 - Road 1 - Storm Network - Catch Basins - D.I | 3d | 2026-11-09 | 2026-11-11 | RSZone 2Road 01Storm NetworkA73220 |  |  |  | 118.4d | 0d | Contract Price Original Scope [52803.9 SAR]; Crane Operator [7 h]; Boom Truck Operator [7 h]; Equipment Operator [7 h]; Labour [450.81 h]; Catch Basins [23] | 52,803.95 |  | RD1 |
| RSZone 2Road 01Storm NetworkA73240 |  | Zone 2 - Road 1 - Storm Network - Catch Basins - Inner Isolation | 2d | 2026-11-12 | 2026-11-14 | RSZone 2Road 01Storm NetworkA73230 |  |  |  | 118.4d | 0d | Contract Price Original Scope [52803.9 SAR]; Equipment Operator [20 h]; Labour [450.81 h]; Catch Basins [23] | 52,803.95 |  | RD1 |
| RSZone 2Road 01Storm NetworkA73250 |  | Zone 2 - Road 1 - Storm Network - Catch Basins - Backfilling | 2d | 2026-11-15 | 2026-11-16 | RSZone 2Road 01Storm NetworkA73240 |  |  |  | 118.4d | 104d | Contract Price Original Scope [26402 SAR]; Excavator Operator [20 h]; Compactor Operator [20 h]; Dump Truck Operator [20 h]; Water Truck Operator [20 h]; Labour [225.41 h]; Catch Basins [23] | 26,401.97 |  | RD1 |
|  | 7 | **Soakaway** |  | 2026-03-26 | 2026-11-14 |  |  |  |  |  |  |  |  |  |  |
| RSZone 2Road 01Storm NetworkA73410 |  | Zone 2 - Road 1 - Storm Network - Soakaway - Excavation | 5d | 2026-03-26 A | 2026-03-31 A | RSZone 2Road 01Storm NetworkA73220 | 100% | 2026-03-26 | 2026-04-01 |  |  | Contract Price Original Scope [57433.1 SAR]; Excavator Operator [30 h]; Dump Truck Operator [30 h]; Labour [490.33 h]; Soakaway [18] | 57,433.06 | 57,433.06 | RD1 |
| RSZone 2Road 01Storm NetworkA73420 |  | Zone 2 - Road 1 - Storm Network - Soakaway - Installation | 1.9d | 2026-04-01 A | 2026-04-02 A | RSZone 2Road 01Storm NetworkA73410 | 100% |  |  |  |  | Contract Price Original Scope [229732 SAR]; Crane Operator [7 h]; Equipment Operator [7 h]; Labour [1961.33 h]; Soakaway [18] | 229,732.23 | 229,732.23 | RD1 |
| RSZone 2Road 01Storm NetworkA73440-old |  | Zone 2 - Road 1 - Storm Network - Soakaway - Inner Isolation (old) | 81d | 2026-07-29 A | 2026-11-01 A | RSZone 2Road 01Storm NetworkA74570-old | 100% |  |  |  |  | Contract Price Original Scope [27663.6 SAR]; Equipment Operator [14.45 h]; Labour [236.18 h]; Soakaway [13.01] | 27,663.59 | 27,663.59 | RD1 |
| RSZone 2Road 01Storm NetworkA73450-old |  | Zone 2 - Road 1 - Storm Network - Soakaway - Backfilling (old) | 78d | 2026-08-02 A | 2026-11-01 A | RSZone 2Road 01Storm NetworkA73440-old | 100% |  |  |  |  | Contract Price Original Scope [13831.8 SAR]; Excavator Operator [14.45 h]; Compactor Operator [14.45 h]; Dump Truck Operator [14.45 h]; Water Truck Operator [14.45 h]; Labour [118.09 h]; Soakaway [13.01] | 13,831.79 | 13,831.79 | RD1 |
| RSZone 2Road 01Storm NetworkA73440 |  | Zone 2 - Road 1 - Storm Network - Soakaway - Inner Isolation | 1d | 2026-11-09 | 2026-11-09 | RSZone 2Road 01Storm NetworkA73440-old, RSZone 2Road 01Storm NetworkA74570 |  |  |  | 120.4d | 0d | Contract Price Original Scope [10625.1 SAR]; Equipment Operator [5.55 h]; Labour [90.71 h]; Soakaway [5] | 10,625.12 |  | RD1 |
| RSZone 2Road 01Storm NetworkA73450 |  | Zone 2 - Road 1 - Storm Network - Soakaway - Backfilling | 1d | 2026-11-10 | 2026-11-10 | RSZone 2Road 01Storm NetworkA73450-old, RSZone 2Road 01Storm NetworkA73440 |  |  |  | 120.4d | 0d | Contract Price Original Scope [5312.56 SAR]; Excavator Operator [5.55 h]; Compactor Operator [5.55 h]; Dump Truck Operator [5.55 h]; Water Truck Operator [5.55 h]; Labour [45.36 h]; Soakaway [5] | 5,312.56 |  | RD1 |
| RSZone 2Road 01Storm NetworkA73430 |  | Zone 2 - Road 1 - Storm Network - Soakaway - D.I | 3d | 2026-11-11 | 2026-11-14 | RSZone 2Road 01Storm NetworkA73450, RSZone 2Road 01Storm NetworkA73440 |  |  |  | 120.4d | 106d | Contract Price Original Scope [38288.7 SAR]; Crane Operator [7 h]; Boom Truck Operator [7 h]; Equipment Operator [7 h]; Labour [326.89 h]; Soakaway [18] | 38,288.71 |  | RD1 |

| ID | WBS | Activity | Duration | Start | Finish | Predecessors | Complete | Planned start | Planned finish | Total float | Free float | Resources | Cost | Actual cost | MODON |
| --- | --- | --- | --- | --- | --- | --- | --- | --- | --- | --- | --- | --- | --- | --- | --- |
|  | 4 | **Gully outfalls** |  | 2026-01-25 | 2026-11-16 |  |  |  |  |  |  |  |  |  |  |
| RSZone 2Road 01Storm NetworkA73010 |  | Zone 2 - Road 1 - Storm Network - Gully outfalls - Excavation | 4d | 2026-01-25 A | 2026-01-28 A | RSZone 2Road 01Storm NetworkA73420 | 100% |  |  |  |  | Contract Price Original Scope [67310.1 SAR]; Excavator Operator [30 h]; Dump Truck Operator [30 h]; Labour [574.66 h]; Gully outfalls [67] | 67,310.1 | 67,310.1 | RD1 |
| RSZone 2Road 01Storm NetworkA73020 |  | Zone 2 - Road 1 - Storm Network - Gully outfalls - Installation | 4d | 2026-01-29 A | 2026-02-02 A | RSZone 2Road 01Storm NetworkA73010 | 100% | 2026-01-29 | 2026-02-03 |  |  | Contract Price Original Scope [269240 SAR]; Crane Operator [7 h]; Equipment Operator [7 h]; Labour [2298.64 h]; Gully outfalls [67] | 269,240.4 | 269,240.4 | RD1 |
| RSZone 2Road 01Storm NetworkA73040 |  | Zone 2 - Road 1 - Storm Network - Gully outfalls - Inner Isolation | 2d | 2026-11-09 | 2026-11-10 | RSZone 2Road 01Storm NetworkA73020 |  |  |  | 118.4d | 0d | Contract Price Original Scope [44873.4 SAR]; Equipment Operator [20 h]; Labour [383.11 h]; Gully outfalls [67] | 44,873.4 |  | RD1 |
| RSZone 2Road 01Storm NetworkA73030 |  | Zone 2 - Road 1 - Storm Network - Gully outfalls - D.I | 3d | 2026-11-11 | 2026-11-14 | RSZone 2Road 01Storm NetworkA73040 |  |  |  | 118.4d | 0d | Contract Price Original Scope [44873.4 SAR]; Crane Operator [7 h]; Boom Truck Operator [7 h]; Equipment Operator [7 h]; Labour [383.11 h]; Gully outfalls [67] | 44,873.4 |  | RD1 |
| RSZone 2Road 01Storm NetworkA73050 |  | Zone 2 - Road 1 - Storm Network - Gully outfalls - Backfilling | 2d | 2026-11-15 | 2026-11-16 | RSZone 2Road 01Storm NetworkA73030 |  |  |  | 118.4d | 104d | Contract Price Original Scope [22436.7 SAR]; Excavator Operator [20 h]; Compactor Operator [20 h]; Dump Truck Operator [20 h]; Water Truck Operator [20 h]; Labour [191.55 h]; Gully outfalls [67] | 22,436.7 |  | RD1 |
|  | 6 | **Gravel and Geotextile** |  | 2026-02-05 | 2026-02-06 |  |  |  |  |  |  |  |  |  |  |
| RSZone 2Road 01Storm NetworkA74310 |  | Zone 2 - Road 1 - Storm Network - Gravel and Geotextile - Installation | 0.9d | 2026-02-05 A | 2026-02-06 A | RSZone 2Road 01Storm NetworkA73020 | 100% | 2026-02-05 | 2026-02-05 |  |  | Contract Price Original Scope [478694 SAR]; Excavator Operator [8 h]; Dump Truck Operator [8 h]; Equipment Operator [8 h]; Water Truck Operator [8 h]; Labour [4086.84 h]; Gravel and Geotextile [4081] | 478,694.22 | 478,694.22 | RD1 |
|  | 3 | **Potable Water Network** |  | 2026-08-05 | 2026-11-22 |  |  |  |  |  |  |  |  |  |  |
|  | 2 | **Buried Valves** |  | 2026-08-05 | 2026-11-19 |  |  |  |  |  |  |  |  |  |  |
| RSZone 2Road 01Potable NetworkA75890-old |  | Zone 2 - Road 1 - Potable Water Network - Buried Valves - Excavation (old) | 75d | 2026-08-05 A | 2026-11-01 A | RSZone 1Road 32Potable NetworkA58020 | 100% |  |  |  |  | Contract Price Original Scope [2402.85 SAR]; Excavator Operator [15 h]; Dump Truck Operator [15 h]; Labour [20.51 h]; Buried Valves [15] | 2,402.85 | 2,402.85 | RD1 |
| RSZone 2Road 01Potable NetworkA75900-old |  | Zone 2 - Road 1 - Potable Water Network - Buried Valves - Installation (old) | 72d | 2026-08-09 A | 2026-11-01 A | RSZone 2Road 01Potable NetworkA75890-old | 100% |  |  |  |  | Contract Price Original Scope [31237 SAR]; Labour [266.69 h]; Buried Valves [15] | 31,237.01 | 31,237.01 | RD1 |
| RSZone 2Road 01Potable NetworkA75890 |  | Zone 2 - Road 1 - Potable Water Network - Buried Valves - Excavation | 1.5d | 2026-11-09 | 2026-11-10 | RSZone 2Road 01Potable NetworkA75890-old |  |  |  | 89.9d | 0d | Contract Price Original Scope [2402.85 SAR]; Excavator Operator [15 h]; Dump Truck Operator [15 h]; Labour [20.51 h]; Buried Valves [15] | 2,402.85 |  | RD1 |
| RSZone 2Road 01Potable NetworkA75900 |  | Zone 2 - Road 1 - Potable Water Network - Buried Valves - Installation | 1.5d | 2026-11-10 | 2026-11-11 | RSZone 2Road 01Potable NetworkA75900-old, RSZone 2Road 01Potable NetworkA75890 |  |  |  | 91.4d | 0d | Contract Price Original Scope [31237 SAR]; Labour [266.69 h]; Buried Valves [15] | 31,237.01 |  | RD1 |
| RSZone 2Road 01Potable NetworkA75910 |  | Zone 2 - Road 1 - Potable Water Network - Buried Valves - Surface Box | 3d | 2026-11-12 | 2026-11-15 | RSZone 2Road 01Potable NetworkA75900, RSZone 2Road 01Potable NetworkA75890 |  |  |  | 91.4d | 0d | Labour; Buried Valves [30] |  |  | RD1 |
| RSZone 2Road 01Potable NetworkA75920 |  | Zone 2 - Road 1 - Potable Water Network - Buried Valves - Test | 2d | 2026-11-16 | 2026-11-17 | RSZone 2Road 01Potable NetworkA75910 |  |  |  | 91.4d | 0d | Contract Price Original Scope [19222.8 SAR]; Pump Operator [20 h]; Equipment Operator [20 h]; Labour [164.11 h]; Buried Valves [30] | 19,222.77 |  | RD1 |
| RSZone 2Road 01Potable NetworkA75930 |  | Zone 2 - Road 1 - Potable Water Network - Buried Valves - Backfilling | 2d | 2026-11-18 | 2026-11-19 | RSZone 2Road 01Potable NetworkA75920 |  |  |  | 91.4d | 91.2d | Contract Price Original Scope [9611.39 SAR]; Excavator Operator [20 h]; Compactor Operator [20 h]; Dump Truck Operator [20 h]; Water Truck Operator [20 h]; Labour [82.06 h]; Buried Valves [30] | 9,611.39 |  | RD1 |
|  | 7 | **FIRE HYDRANT** |  | 2026-08-13 | 2026-11-22 |  |  |  |  |  |  |  |  |  |  |
| RSZone 2Road 01Potable NetworkA77140-old |  | Zone 2 - Road 1 - Potable Water Network - FIRE HYDRANT - Excavation (old) | 68d | 2026-08-13 A | 2026-11-01 A | RSZone 2Road 01Potable NetworkA75890-old | 100% | 2026-08-13 | 2026-11-02 |  |  | Contract Price Original Scope [12485.5 SAR]; Excavator Operator [27 h]; Dump Truck Operator [27 h]; Labour [106.6 h]; Fire Hydrant [9] | 12,485.54 | 12,485.54 | RD1 |
| RSZone 2Road 01Potable NetworkA77150-old |  | Zone 2 - Road 1 - Potable Water Network - FIRE HYDRANT - Buried Gate Valve Installation (old) | 66d | 2026-08-16 A | 2026-11-01 A | RSZone 2Road 01Potable NetworkA77140-old | 100% |  |  |  |  | Labour; Fire Hydrant [9] |  |  | RD1 |
| RSZone 2Road 01Potable NetworkA77160-old |  | Zone 2 - Road 1 - Potable Water Network - FIRE HYDRANT - Fire Hydrant Installation (old) | 65d | 2026-08-17 A | 2026-11-01 A | RSZone 2Road 01Potable NetworkA77150-old | 100% |  |  |  |  | Contract Price Original Scope [91144.4 SAR]; Labour [778.14 h]; Fire Hydrant [9] | 91,144.43 | 91,144.43 | RD1 |
| RSZone 2Road 01Potable NetworkA77140 |  | Zone 2 - Road 1 - Potable Water Network - FIRE HYDRANT - Excavation | 1d | 2026-11-10 | 2026-11-11 | RSZone 2Road 01Potable NetworkA77140-old, RSZone 2Road 01Potable NetworkA75890 |  |  |  | 89.9d | 0d | Contract Price Original Scope [1387.28 SAR]; Excavator Operator [3 h]; Dump Truck Operator [3 h]; Labour [11.84 h]; Fire Hydrant [1] | 1,387.28 |  | RD1 |
| RSZone 2Road 01Potable NetworkA77150 |  | Zone 2 - Road 1 - Potable Water Network - FIRE HYDRANT - Buried Gate Valve Installation | 1d | 2026-11-11 | 2026-11-12 | RSZone 2Road 01Potable NetworkA77150-old, RSZone 2Road 01Potable NetworkA77140 |  |  |  | 89.9d | 0d | Labour; Fire Hydrant [1] |  |  | RD1 |
| RSZone 2Road 01Potable NetworkA77160 |  | Zone 2 - Road 1 - Potable Water Network - FIRE HYDRANT - Fire Hydrant Installation | 1d | 2026-11-12 | 2026-11-14 | RSZone 2Road 01Potable NetworkA77160-old, RSZone 2Road 01Potable NetworkA77150 |  |  |  | 89.9d | 0d | Contract Price Original Scope [10127.2 SAR]; Labour [86.46 h]; Fire Hydrant [1] | 10,127.16 |  | RD1 |
| RSZone 2Road 01Potable NetworkA77170 |  | Zone 2 - Road 1 - Potable Water Network - FIRE HYDRANT - Surface Box | 3d | 2026-11-14 | 2026-11-17 | RSZone 2Road 01Potable NetworkA77160, RSZone 2Road 01Potable NetworkA77140, RSZone 2Road 01Potable NetworkA77150 |  |  |  | 89.9d | 0d | Labour; Fire Hydrant [10] |  |  | RD1 |
| RSZone 2Road 01Potable NetworkA77180 |  | Zone 2 - Road 1 - Potable Water Network - FIRE HYDRANT - Test | 2d | 2026-11-17 | 2026-11-19 | RSZone 2Road 01Potable NetworkA77170 |  |  |  | 89.9d | 0d | Contract Price Original Scope [9710.97 SAR]; Pump Operator [20 h]; Equipment Operator [20 h]; Labour [82.91 h]; Fire Hydrant [10] | 9,710.97 |  | RD1 |
| RSZone 2Road 01Potable NetworkA77190 |  | Zone 2 - Road 1 - Potable Water Network - FIRE HYDRANT - Backfilling | 2d | 2026-11-19 | 2026-11-22 | RSZone 2Road 01Potable NetworkA77180 |  |  |  | 89.9d | 89.7d | Contract Price Original Scope [13872.8 SAR]; Excavator Operator [20 h]; Compactor Operator [20 h]; Dump Truck Operator [20 h]; Water Truck Operator [20 h]; Labour [118.44 h]; Fire Hydrant [10] | 13,872.82 |  | RD1 |

| ID | WBS | Activity | Duration | Start | Finish | Predecessors | Complete | Total float | Free float | Resources | Cost | Actual cost | MODON |
| --- | --- | --- | --- | --- | --- | --- | --- | --- | --- | --- | --- | --- | --- |
|  | 22 | **Lateral Irrigation Network** |  | 2025-12-15 | 2027-01-19 |  |  |  |  |  |  |  |  |
|  | 1 | **HDPE Pipes 125 MM** |  | 2025-12-15 | 2026-11-12 |  |  |  |  |  |  |  |  |
| RSZone 2Road 01Irrigation NetworkA69230 |  | Zone 2 - Road 1 - Lateral Irrigation Network - HDPE Pipes 125 MM - Excavation | 6d | 2025-12-15 A | 2025-12-21 A | RSZone 1Road 32Irrigation NetworkA28490 | 100% |  |  | Contract Price Original Scope [1846.22 SAR]; Excavator Operator [30 h]; Dump Truck Operator [30 h]; Labour [15.76 h]; HDPE Pipes 125 MM [133] | 1,846.22 | 1,846.22 | RD1 |
| RSZone 2Road 01Irrigation NetworkA69240 |  | Zone 2 - Road 1 - Lateral Irrigation Network - HDPE Pipes 125 MM - Pipe Installation | 6d | 2025-12-22 A | 2025-12-28 A | RSZone 2Road 01Irrigation NetworkA69230 | 100% |  |  | Contract Price Original Scope [12923.6 SAR]; Excavator Operator [40 h]; Crane Operator [40 h]; Equipment Operator [40 h]; Labour [110.33 h]; HDPE Pipes 125 MM [133] | 12,923.57 | 12,923.57 | RD1 |
| RSZone 2Road 01Irrigation NetworkA69250 |  | Zone 2 - Road 1 - Lateral Irrigation Network - HDPE Pipes 125 MM - Test | 2d | 2026-11-09 | 2026-11-10 | RSZone 2Road 01Irrigation NetworkA69240 |  | 97.4d | 0d | Contract Price Original Scope [1846.22 SAR]; Pump Operator [20 h]; Equipment Operator [20 h]; Labour [15.76 h]; HDPE Pipes 125 MM [133] | 1,846.22 |  | RD1 |
| RSZone 2Road 01Irrigation NetworkA69260 |  | Zone 2 - Road 1 - Lateral Irrigation Network - HDPE Pipes 125 MM - Backfilling | 2d | 2026-11-11 | 2026-11-12 | RSZone 2Road 01Irrigation NetworkA69250 |  | 97.4d | 96.76d | Contract Price Original Scope [1846.22 SAR]; Excavator Operator [20 h]; Compactor Operator [20 h]; Dump Truck Operator [20 h]; Water Truck Operator [20 h]; Labour [15.76 h]; HDPE Pipes 125 MM [133] | 1,846.22 |  | RD1 |
|  | 7 | **HDPE Pipes 280 MM** |  | 2026-07-28 | 2026-11-12 |  |  |  |  |  |  |  |  |
| RSZone 2Road 01Irrigation NetworkA90270 |  | Zone 2 - Road 1 - Lateral Irrigation Network - HDPE Pipes 280 MM - Excavation | 2.9d | 2026-07-28 A | 2026-07-30 A | RSZone 2Road 01Irrigation NetworkA69240 | 100% |  |  | Contract Price Original Scope [4473.32 SAR]; Excavator Operator [30 h]; Dump Truck Operator [30 h]; Labour [38.19 h]; HDPE Pipes 280 MM [133] | 4,473.32 | 4,473.32 | RD1 |
| RSZone 2Road 01Irrigation NetworkA90280 |  | Zone 2 - Road 1 - Lateral Irrigation Network - HDPE Pipes 280 MM - Pipe Installation | 4.9d | 2026-08-02 A | 2026-08-06 A | RSZone 2Road 01Irrigation NetworkA90270 | 100% |  |  | Contract Price Original Scope [31313.2 SAR]; Excavator Operator [40 h]; Crane Operator [40 h]; Equipment Operator [40 h]; Labour [267.34 h]; HDPE Pipes 280 MM [133] | 31,313.25 | 31,313.25 | RD1 |
| RSZone 2Road 01Irrigation NetworkA90290 |  | Zone 2 - Road 1 - Lateral Irrigation Network - HDPE Pipes 280 MM - Test | 2d | 2026-11-09 | 2026-11-10 | RSZone 2Road 01Irrigation NetworkA90280 |  | 97.4d | 0d | Contract Price Original Scope [4473.32 SAR]; Pump Operator [20 h]; Equipment Operator [20 h]; Labour [38.19 h]; HDPE Pipes 280 MM [133] | 4,473.32 |  | RD1 |
| RSZone 2Road 01Irrigation NetworkA90300 |  | Zone 2 - Road 1 - Lateral Irrigation Network - HDPE Pipes 280 MM - Backfilling | 2d | 2026-11-11 | 2026-11-12 | RSZone 2Road 01Irrigation NetworkA90290 |  | 97.4d | 96.76d | Contract Price Original Scope [4473.32 SAR]; Excavator Operator [20 h]; Compactor Operator [20 h]; Dump Truck Operator [20 h]; Water Truck Operator [20 h]; Labour [38.19 h]; HDPE Pipes 280 MM [133] | 4,473.32 |  | RD1 |
|  | 2 | **Valves** |  | 2025-12-21 | 2026-11-16 |  |  |  |  |  |  |  |  |
|  | 1 | **Buried Valves** |  | 2025-12-21 | 2026-11-16 |  |  |  |  |  |  |  |  |
| RSZone 2Road 01Irrigation NetworkA69580 |  | Zone 2 - Road 1 - Lateral Irrigation Network - Buried Valves - Excavation | 3d | 2025-12-21 A | 2025-12-23 A | RSZone 2Road 01Irrigation NetworkA90280 | 100% |  |  | Contract Price Original Scope [6456.64 SAR]; Excavator Operator [30 h]; Dump Truck Operator [30 h]; Labour [55.12 h]; Buried Valves [96] | 6,456.64 | 6,456.64 | RD1 |
| RSZone 2Road 01Irrigation NetworkA69590 |  | Zone 2 - Road 1 - Lateral Irrigation Network - Buried Valves - Installation | 1.9d | 2025-12-24 A | 2025-12-25 A | RSZone 2Road 01Irrigation NetworkA69580 | 100% |  |  | Contract Price Original Scope [83936.3 SAR]; Labour [716.6 h]; Buried Valves [96] | 83,936.27 | 83,936.27 | RD1 |
| RSZone 2Road 01Irrigation NetworkA69610 |  | Zone 2 - Road 1 - Lateral Irrigation Network - Buried Valves - Test | 2d | 2026-11-09 | 2026-11-10 | RSZone 2Road 01Irrigation NetworkA69590 |  | 94.4d | 0d | Contract Price Original Scope [25826.5 SAR]; Pump Operator [20 h]; Equipment Operator [20 h]; Labour [220.49 h]; Buried Valves [96] | 25,826.54 |  | RD1 |
| RSZone 2Road 01Irrigation NetworkA69600 |  | Zone 2 - Road 1 - Lateral Irrigation Network - Buried Valves - Surface Box | 3d | 2026-11-11 | 2026-11-14 | RSZone 2Road 01Irrigation NetworkA69610 |  | 94.4d | 0d | Labour; Buried Valves [96] |  |  | RD1 |
| RSZone 2Road 01Irrigation NetworkA69620 |  | Zone 2 - Road 1 - Lateral Irrigation Network - Buried Valves - Backfilling | 2d | 2026-11-15 | 2026-11-16 | RSZone 2Road 01Irrigation NetworkA69600 |  | 94.4d | 93.76d | Contract Price Original Scope [12913.3 SAR]; Excavator Operator [20 h]; Compactor Operator [20 h]; Dump Truck Operator [20 h]; Water Truck Operator [20 h]; Labour [110.25 h]; Buried Valves [96] | 12,913.27 |  | RD1 |
|  | 6 | **HDPE Fitting** |  | 2026-07-29 | 2026-11-14 |  |  |  |  |  |  |  |  |
|  | 1 | **Elbows for Pipe 280 MM** |  | 2026-07-29 | 2026-08-02 |  |  |  |  |  |  |  |  |
| RSZone 2Road 01Irrigation NetworkA90310 |  | Zone 2 - Road 1 - Lateral Irrigation Network - Elbows for Pipe 280 MM - Installation | 4d | 2026-07-29 A | 2026-08-02 A | RSZone 2Road 01Irrigation NetworkA69590 | 100% |  |  | Contract Price Original Scope [2598.92 SAR]; Labour [22.19 h]; Fittings - Elbows (all sizes) [2] | 2,598.92 | 2,598.92 | RD1 |
|  | 6 | **Tees for Pipe 125 MM** |  | 2026-10-12 | 2026-11-10 |  |  |  |  |  |  |  |  |
| RSZone 2Road 01Irrigation NetworkA90350- |  | Zone 2 - Road 1 - Lateral Irrigation Network - Tees for Pipe 125 MM - Installation (old) | 18d | 2026-10-12 A | 2026-11-01 A | RSZone 2Road 01Irrigation NetworkA90310 | 100% |  |  | Contract Price Original Scope [3072.12 SAR]; Labour [26.23 h]; Fittings - Tees (all sizes) [2] | 3,072.12 | 3,072.12 | RD1 |
| RSZone 2Road 01Irrigation NetworkA90350- |  | Zone 2 - Road 1 - Lateral Irrigation Network - Tees for Pipe 125 MM - Installation (old) | 2d | 2026-11-09 | 2026-11-10 | RSZone 2Road 01Irrigation NetworkA90350- |  | 96.4d | 0d | Contract Price Original Scope [6144.24 SAR]; Labour [52.46 h]; Fittings - Tees (all sizes) [4] | 6,144.24 |  | RD1 |

| ID | WBS | Activity | Duration | Start | Finish | Predecessors | Complete | Planned start | Planned finish | Total float | Free float | Resources | Cost | Actual cost | MODON |
| --- | --- | --- | --- | --- | --- | --- | --- | --- | --- | --- | --- | --- | --- | --- | --- |
|  | 5 | **Tees for Pipe 280 MM** |  | 2026-11-11 | 2026-11-14 |  |  |  |  |  |  |  |  |  |  |
| RSZone 2Road 01Irrigation NetworkA90340 |  | Zone 2 - Road 1 - Lateral Irrigation Network - Tees for Pipe 280 MM - Installation | 3d | 2026-11-11 | 2026-11-14 | RSZone 2Road 01Irrigation NetworkA90350- |  |  |  | 96.4d | 95.76d | Contract Price Original Scope [9216.36 SAR]; Labour [78.68 h]; Fittings - Tees (all sizes) [6] | 9,216.36 |  | RD1 |
|  | 4 | **End Cap for Pipe 125 MM** |  | 2026-08-02 | 2026-08-03 |  |  |  |  |  |  |  |  |  |  |
| RSZone 2Road 01Irrigation NetworkA90330 |  | Zone 2 - Road 1 - Lateral Irrigation Network - End Cap for Pipe 125 MM - Installation | 2d | 2026-08-02 A | 2026-08-03 A | RSZone 2Road 01Irrigation NetworkA90310 | 100% |  |  |  |  | Contract Price Original Scope [2241.54 SAR]; Labour [19.14 h]; Fittings - End Caps (all sizes) [6] | 2,241.54 | 2,241.54 | RD1 |
|  | 3 | **Reducer for Pipe 160 MM** |  | 2026-08-02 | 2026-08-04 |  |  |  |  |  |  |  |  |  |  |
| RSZone 2Road 01Irrigation NetworkA90320 |  | Zone 2 - Road 1 - Lateral Irrigation Network - Reducer for Pipe 160 MM - Installation | 3d | 2026-08-02 A | 2026-08-04 A | RSZone 2Road 01Irrigation NetworkA90330 | 100% |  |  |  |  | Contract Price Original Scope [6866.52 SAR]; Labour [58.62 h]; Fittings - Reducers (Connectors) (all sizes) [5] | 6,866.52 | 6,866.52 | RD1 |
|  | 3 | **Valve Champer** |  | 2025-12-23 | 2027-01-19 |  |  |  |  |  |  |  |  |  |  |
|  | 2 | **Air Valves Champer** |  | 2025-12-23 | 2026-11-17 |  |  |  |  |  |  |  |  |  |  |
| RSZone 2Road 01Irrigation NetworkA69910 |  | Zone 2 - Road 1 - Lateral Irrigation Network - Air Valves Champer - Excavation | 2.9d | 2025-12-23 A | 2025-12-25 A | RSZone 2Road 01Irrigation NetworkA90320 | 100% |  |  |  |  | Contract Price Original Scope [3458.31 SAR]; Labour [29.53 h]; Air Valve Chambers [3] | 3,458.31 | 3,458.31 | RD1 |
| RSZone 2Road 01Irrigation NetworkA69920 |  | Zone 2 - Road 1 - Lateral Irrigation Network - Air Valves Champer - Footings | 4.9d | 2025-12-28 A | 2026-01-01 A | RSZone 2Road 01Irrigation NetworkA69910 | 100% |  |  |  |  | Contract Price Original Scope [10374.9 SAR]; Labour [88.58 h]; Air Valve Chambers [3] | 10,374.94 | 10,374.94 | RD1 |
| RSZone 2Road 01Irrigation NetworkA69930 |  | Zone 2 - Road 1 - Lateral Irrigation Network - Air Valves Champer - Walls | 4d | 2026-01-04 A | 2026-01-07 A | RSZone 2Road 01Irrigation NetworkA69920 | 100% |  |  |  |  | Contract Price Original Scope [13833.2 SAR]; Labour [118.1 h]; Air Valve Chambers [3] | 13,833.25 | 13,833.25 | RD1 |
| RSZone 2Road 01Irrigation NetworkA69960 |  | Zone 2 - Road 1 - Lateral Irrigation Network - Air Valves Champer - Internal Isolation | 4d | 2026-01-08 A | 2026-01-12 A | RSZone 2Road 01Irrigation NetworkA69930 | 100% | 2026-01-08 | 2026-01-13 |  |  | Contract Price Original Scope [3458.31 SAR]; Labour [29.53 h]; Air Valve Chambers [3] | 3,458.31 | 3,458.31 | RD1 |
| RSZone 2Road 01Irrigation NetworkA69970 |  | Zone 2 - Road 1 - Lateral Irrigation Network - Air Valves Champer - External Isolation | 2d | 2026-01-13 A | 2026-01-14 A | RSZone 2Road 01Irrigation NetworkA69960 | 100% |  |  |  |  | Contract Price Original Scope [3458.31 SAR]; Labour [29.53 h]; Air Valve Chambers [3] | 3,458.31 | 3,458.31 | RD1 |
| RSZone 2Road 01Irrigation NetworkA69940 |  | Zone 2 - Road 1 - Lateral Irrigation Network - Air Valves Champer - Slab | 3d | 2026-11-09 | 2026-11-11 | RSZone 2Road 01Irrigation NetworkA69970 |  |  |  | 93.4d | 0d | Contract Price Original Scope [24208.2 SAR]; Labour [206.68 h]; Air Valve Chambers [3] | 24,208.19 |  | RD1 |
| RSZone 2Road 01Irrigation NetworkA69950 |  | Zone 2 - Road 1 - Lateral Irrigation Network - Air Valves Champer - D.I Cover | 3d | 2026-11-12 | 2026-11-15 | RSZone 2Road 01Irrigation NetworkA69940 |  |  |  | 93.4d | 0d | Contract Price Original Scope [6916.63 SAR]; Labour [59.05 h]; Air Valve Chambers [3] | 6,916.63 |  | RD1 |
| RSZone 2Road 01Irrigation NetworkA69980 |  | Zone 2 - Road 1 - Lateral Irrigation Network - Air Valves Champer - Backfilling | 2d | 2026-11-16 | 2026-11-17 | RSZone 2Road 01Irrigation NetworkA69950 |  |  |  | 93.4d | 92.76d | Contract Price Original Scope [3458.31 SAR]; Excavator Operator [20 h]; Compactor Operator [20 h]; Dump Truck Operator [20 h]; Water Truck Operator [20 h]; Labour [29.53 h]; Air Valve Chambers [3] | 3,458.31 |  | RD1 |
|  | 3 | **Washout Valves Champer** |  | 2026-12-23 | 2027-01-19 |  |  |  |  |  |  |  |  |  |  |
| RSZone 2Road 01Irrigation NetworkA69990 |  | Zone 2 - Road 1 - Lateral Irrigation Network - Washout Valves Champer - Excavation | 3d | 2026-12-23 | 2026-12-27 | RSZone 1Road 25Irrigation NetworkA22880 SS |  |  |  | 0.64d | 0d | Contract Price Original Scope [3326.04 SAR]; Labour [28.4 h]; Washout Chambers [2] | 3,326.04 |  | RD1 |
| RSZone 2Road 01Irrigation NetworkA70000 |  | Zone 2 - Road 1 - Lateral Irrigation Network - Washout Valves Champer - Footings | 3d | 2026-12-27 | 2026-12-30 | RSZone 2Road 01Irrigation NetworkA69990 |  |  |  | 39.94d | 0d | Contract Price Original Scope [9978.13 SAR]; Labour [85.19 h]; Washout Chambers [2] | 9,978.13 |  | RD1 |
| RSZone 2Road 01Irrigation NetworkA70020 |  | Zone 2 - Road 1 - Lateral Irrigation Network - Washout Valves Champer - Slab | 3d | 2026-12-30 | 2027-01-03 | RSZone 2Road 01Irrigation NetworkA70000 |  |  |  | 39.94d | 0d | Contract Price Original Scope [23282.3 SAR]; Labour [198.77 h]; Washout Chambers [2] | 23,282.31 |  | RD1 |
| RSZone 2Road 01Irrigation NetworkA70010 |  | Zone 2 - Road 1 - Lateral Irrigation Network - Washout Valves Champer - Walls | 3d | 2027-01-03 | 2027-01-06 | RSZone 2Road 01Irrigation NetworkA70020 |  |  |  | 39.94d | 0d | Contract Price Original Scope [13304.2 SAR]; Labour [113.58 h]; Washout Chambers [2] | 13,304.18 |  | RD1 |
| RSZone 2Road 01Irrigation NetworkA70030 |  | Zone 2 - Road 1 - Lateral Irrigation Network - Washout Valves Champer - D.I Cover | 3d | 2027-01-06 | 2027-01-10 | RSZone 2Road 01Irrigation NetworkA70010 |  |  |  | 39.94d | 0d | Contract Price Original Scope [6652.09 SAR]; Labour [56.79 h]; Washout Chambers [2] | 6,652.09 |  | RD1 |
| RSZone 2Road 01Irrigation NetworkA70040 |  | Zone 2 - Road 1 - Lateral Irrigation Network - Washout Valves Champer - Internal Isolation | 3d | 2027-01-10 | 2027-01-13 | RSZone 2Road 01Irrigation NetworkA70030 |  |  |  | 39.94d | 0d | Contract Price Original Scope [3326.04 SAR]; Labour [28.4 h]; Washout Chambers [2] | 3,326.04 |  | RD1 |
| RSZone 2Road 01Irrigation NetworkA70050 |  | Zone 2 - Road 1 - Lateral Irrigation Network - Washout Valves Champer - External Isolation | 3d | 2027-01-13 | 2027-01-17 | RSZone 2Road 01Irrigation NetworkA70040 |  |  |  | 39.94d | 0d | Contract Price Original Scope [3326.04 SAR]; Labour [28.4 h]; Washout Chambers [2] | 3,326.04 |  | RD1 |
| RSZone 2Road 01Irrigation NetworkA70060 |  | Zone 2 - Road 1 - Lateral Irrigation Network - Washout Valves Champer - Backfilling | 2d | 2027-01-17 | 2027-01-19 | RSZone 2Road 01Irrigation NetworkA70050 |  |  |  | 39.94d | 39.3d | Contract Price Original Scope [3326.04 SAR]; Excavator Operator [20 h]; Compactor Operator [20 h]; Dump Truck Operator [20 h]; Water Truck Operator [20 h]; Labour [28.4 h]; Washout Chambers [2] | 3,326.04 |  | RD1 |

| ID | WBS | Activity | Duration | Start | Finish | Predecessors | Complete | Remaining | Planned start | Planned finish | Total float | Free float | Resources | Cost | Actual cost | MODON |
| --- | --- | --- | --- | --- | --- | --- | --- | --- | --- | --- | --- | --- | --- | --- | --- | --- |
|  | 4 | **FlowMeter Valves Champer** |  | 2025-12-25 | 2026-11-14 |  |  |  |  |  |  |  |  |  |  |  |
| RSZone 2Road 01Irrigation NetworkA70070 |  | Zone 2 - Road 1 - Lateral Irrigation Network - FlowMeter Valves Champer - Excavation | 4d | 2025-12-25 A | 2025-12-29 A | RSZone 2Road 01Irrigation NetworkA69970 | 100% |  | 2025-12-25 | 2025-12-30 |  |  | Contract Price Original Scope [1692.01 SAR]; Labour [14.45 h]; FlowMeter Chambers [1] | 1,692.01 | 1,692.01 | RD1 |
| RSZone 2Road 01Irrigation NetworkA70080 |  | Zone 2 - Road 1 - Lateral Irrigation Network - FlowMeter Valves Champer - Footings | 2.9d | 2025-12-30 A | 2026-01-01 A | RSZone 2Road 01Irrigation NetworkA70070 | 100% |  |  |  |  |  | Contract Price Original Scope [5076.04 SAR]; Labour [43.34 h]; FlowMeter Chambers [1] | 5,076.04 | 5,076.04 | RD1 |
| RSZone 2Road 01Irrigation NetworkA70090 |  | Zone 2 - Road 1 - Lateral Irrigation Network - FlowMeter Valves Champer - Walls | 7d | 2026-01-04 A | 2026-01-11 A | RSZone 2Road 01Irrigation NetworkA70080 | 100% |  |  |  |  |  | Contract Price Original Scope [6768.05 SAR]; Labour [57.78 h]; FlowMeter Chambers [1] | 6,768.05 | 6,768.05 | RD1 |
| RSZone 2Road 01Irrigation NetworkA70100 |  | Zone 2 - Road 1 - Lateral Irrigation Network - FlowMeter Valves Champer - Slab | 6d | 2026-01-12 A | 2026-01-18 A | RSZone 2Road 01Irrigation NetworkA70090 | 100% |  |  |  |  |  | Contract Price Original Scope [11844.1 SAR]; Labour [101.12 h]; FlowMeter Chambers [1] | 11,844.08 | 11,844.08 | RD1 |
| RSZone 2Road 01Irrigation NetworkA70120 |  | Zone 2 - Road 1 - Lateral Irrigation Network - FlowMeter Valves Champer - Internal Isolation | 3.9d | 2026-01-19 A | 2026-01-22 A | RSZone 2Road 01Irrigation NetworkA70100 | 100% |  |  |  |  |  | Contract Price Original Scope [1692.01 SAR]; Labour [14.45 h]; FlowMeter Chambers [1] | 1,692.01 | 1,692.01 | RD1 |
| RSZone 2Road 01Irrigation NetworkA70130 |  | Zone 2 - Road 1 - Lateral Irrigation Network - FlowMeter Valves Champer - External Isolation | 4d | 2026-01-25 A | 2026-01-28 A | RSZone 2Road 01Irrigation NetworkA70120 | 100% |  |  |  |  |  | Contract Price Original Scope [1692.01 SAR]; Labour [14.45 h]; FlowMeter Chambers [1] | 1,692.01 | 1,692.01 | RD1 |
| RSZone 2Road 01Irrigation NetworkA70110 |  | Zone 2 - Road 1 - Lateral Irrigation Network - FlowMeter Valves Champer - D.I Cover | 3d | 2026-11-09 | 2026-11-11 | RSZone 2Road 01Irrigation NetworkA70130 |  |  |  |  | 96.4d | 0d | Contract Price Original Scope [3384.02 SAR]; Labour [28.89 h]; FlowMeter Chambers [1] | 3,384.02 |  | RD1 |
| RSZone 2Road 01Irrigation NetworkA70140 |  | Zone 2 - Road 1 - Lateral Irrigation Network - FlowMeter Valves Champer - Backfilling | 2d | 2026-11-12 | 2026-11-14 | RSZone 2Road 01Irrigation NetworkA70110 |  |  |  |  | 96.4d | 95.76d | Contract Price Original Scope [1692.01 SAR]; Excavator Operator [20 h]; Compactor Operator [20 h]; Dump Truck Operator [20 h]; Water Truck Operator [20 h]; Labour [14.45 h]; FlowMeter Chambers [1] | 1,692.01 |  | RD1 |
|  | 4 | **Bedding** |  | 2025-12-28 | 2025-12-29 |  |  |  |  |  |  |  |  |  |  |  |
| RSZone 2Road 01Irrigation NetworkA70150 |  | Zone 2 - Road 1 - Lateral Irrigation Network - Bedding - Bedding | 2d | 2025-12-28 A | 2025-12-29 A | RSZone 2Road 01Irrigation NetworkA70130 | 100% |  |  |  |  |  | Contract Price Original Scope [6850.28 SAR]; Compactor Operator [20 h]; Equipment Operator [20 h]; Water Truck Operator [20 h]; Labour [58.48 h]; Bedding [266] | 6,850.28 | 6,850.28 | RD1 |
|  | 5 | **Thrust Block** |  | 2026-07-26 | 2026-11-09 |  |  |  |  |  |  |  |  |  |  |  |
| RSZone 2Road 01Irrigation NetworkA70160- |  | Zone 2 - Road 1 - Lateral Irrigation Network - Thrust Block - Thrust Block (old) | 84d | 2026-07-26 A | 2026-11-01 A | RSZone 2Road 01Irrigation NetworkA70150 | 100% |  |  |  |  |  | Contract Price Original Scope [4092.72 SAR]; Crane Operator [3.43 h]; Pump Operator [3.43 h]; Equipment Operator [3.43 h]; Labour [34.94 h]; Thrust Blocks [4.01] | 4,092.72 | 4,092.72 | RD1 |
| RSZone 2Road 01Irrigation NetworkA70160- |  | Zone 2 - Road 1 - Lateral Irrigation Network - Thrust Block - Thrust Block (old) | 1d | 2026-11-09 | 2026-11-09 | RSZone 2Road 01Irrigation NetworkA70160- |  |  |  |  | 100.4d | 99.76d | Contract Price Original Scope [10211.9 SAR]; Crane Operator [8.57 h]; Pump Operator [8.57 h]; Equipment Operator [8.57 h]; Labour [87.18 h]; Thrust Blocks [9.99] | 10,211.92 |  | RD1 |
|  | 2 | **Telecom** |  | 2026-05-25 | 2026-11-23 |  |  |  |  |  |  |  |  |  |  |  |
|  | 1 | **Telecom Pipe** |  | 2026-08-18 | 2026-11-23 |  |  |  |  |  |  |  |  |  |  |  |
| RSZone 2Road 01Telecom NetworkA77930-old |  | Zone 2 - Road 1 - Telecom Network - Telecom Pipe - Excavation (old) | 64d | 2026-08-18 A | 2026-11-01 A | RSZone 1Road 32Telecom NetworkA68960-old | 100% |  |  |  |  |  | Contract Price Original Scope [83532.2 SAR]; Excavator Operator [26.27 h]; Dump Truck Operator [26.27 h]; Labour [713.15 h]; Telecom Pipe [3876.08] | 83,532.2 | 83,532.2 | RD1 |
| RSZone 2Road 01Telecom NetworkA77940-old |  | Zone 2 - Road 1 - Telecom Network - Telecom Pipe - Concrete Pouring (old) | 62d | 2026-08-20 A | 2026-11-01 A | RSZone 2Road 01Telecom NetworkA77930-old | 100% |  | 2026-08-20 | 2026-11-02 |  |  | Contract Price Original Scope [343457 SAR]; Crane Operator [7.2 h]; Pump Operator [7.2 h]; Equipment Operator [7.2 h]; Labour [2932.26 h]; Telecom Pipe [2276.74] | 343,457.26 | 343,457.26 | RD1 |
| RSZone 2Road 01Telecom NetworkA77960-old |  | Zone 2 - Road 1 - Telecom Network - Telecom Pipe - Backfilling (old) | 60d | 2026-08-23 A | 2026-11-01 A | RSZone 2Road 01Telecom NetworkA77940-old | 100% |  |  |  |  |  | Contract Price Original Scope [49054 SAR]; Excavator Operator [10.28 h]; Compactor Operator [10.28 h]; Dump Truck Operator [10.28 h]; Water Truck Operator [10.28 h]; Labour [418.8 h]; Telecom Pipe [2276.22] | 49,053.96 | 49,053.96 | RD1 |
| RSZone 2Road 01Telecom NetworkA77950 |  | Zone 2 - Road 1 - Telecom Network - Telecom Pipe - Test | 2d | 2026-11-07 A | 2026-11-23 | RSZone 2Road 01Telecom NetworkA77960 FF, RSZone 2Road 01Telecom NetworkA77930 FF, RSZone 2Road 01Telecom NetworkA77940 FF, RSZone 2Road 01Telecom NetworkA77960-old | 10% | 1.81d | 2026-11-17 | 2026-11-18 | 93.4d | 93d | Contract Price Original Scope [95404.8 SAR]; Pump Operator [20 h]; Equipment Operator [20 h]; Labour [814.52 h]; Telecom Pipe [4427] | 95,404.79 | 9,142.96 | RD1 |
| RSZone 2Road 01Telecom NetworkA77930 |  | Zone 2 - Road 1 - Telecom Network - Telecom Pipe - Excavation | 1d | 2026-11-21 | 2026-11-21 | RSZone 2Road 01Telecom NetworkA77930-old, RSZone 1Road 32Telecom NetworkA68960 |  |  |  |  | 93.4d | 0d | Contract Price Original Scope [11872.6 SAR]; Excavator Operator [3.73 h]; Dump Truck Operator [3.73 h]; Labour [101.36 h]; Telecom Pipe [550.92] | 11,872.6 |  | RD1 |
| RSZone 2Road 01Telecom NetworkA77940 |  | Zone 2 - Road 1 - Telecom Network - Telecom Pipe - Concrete Pouring | 1d | 2026-11-22 | 2026-11-22 | RSZone 2Road 01Telecom NetworkA77940-old, RSZone 2Road 01Telecom NetworkA77930 |  |  |  |  | 93.4d | 0d | Contract Price Original Scope [324376 SAR]; Crane Operator [6.8 h]; Pump Operator [6.8 h]; Equipment Operator [6.8 h]; Labour [2769.36 h]; Telecom Pipe [2150.26] | 324,376.3 |  | RD1 |
| RSZone 2Road 01Telecom NetworkA77960 |  | Zone 2 - Road 1 - Telecom Network - Telecom Pipe - Backfilling | 1d | 2026-11-23 | 2026-11-23 | RSZone 2Road 01Telecom NetworkA77960-old, RSZone 2Road 01Telecom NetworkA77940 |  |  |  |  | 93.4d | 0d | Contract Price Original Scope [46350.8 SAR]; Excavator Operator [9.72 h]; Compactor Operator [9.72 h]; Dump Truck Operator [9.72 h]; Water Truck Operator [9.72 h]; Labour [395.72 h]; Telecom Pipe [2150.78] | 46,350.83 |  | RD1 |
|  | 12 | **Telecom Duct** |  | 2026-05-25 | 2026-11-10 |  |  |  |  |  |  |  |  |  |  |  |
| RSZone 2Road 01Telecom NetworkA77970 |  | Zone 2 - Road 1 - Telecom Network - Telecom Duct - Excavation | 3d | 2026-05-25 A | 2026-05-27 A | RSZone 1Road 32Telecom NetworkA67730 | 100% |  |  |  |  |  | Contract Price Original Scope [14302 SAR]; Excavator Operator [30 h]; Dump Truck Operator [30 h]; Labour [122.1 h]; Telecom Duct (Road Crossing) [657] | 14,302.05 | 14,302.05 | RD1 |
| RSZone 2Road 01Telecom NetworkA77980 |  | Zone 2 - Road 1 - Telecom Network - Telecom Duct - Concrete Pouring | 3d | 2026-05-28 A | 2026-05-31 A | RSZone 2Road 01Telecom NetworkA77970 | 100% |  | 2026-05-28 | 2026-06-01 |  |  | Contract Price Original Scope [200229 SAR]; Crane Operator [13 h]; Pump Operator [13 h]; Equipment Operator [13 h]; Labour [1709.45 h]; Telecom Duct (Road Crossing) [657] | 200,228.74 | 200,228.74 | RD1 |
| RSZone 2Road 01Telecom NetworkA78000-old |  | Zone 2 - Road 1 - Telecom Network - Telecom Duct - Backfilling (old) | 59d | 2026-08-24 A | 2026-11-01 A | RSZone 2Road 01Telecom NetworkA77980 | 100% |  |  |  |  |  | Contract Price Original Scope [21417.3 SAR]; Excavator Operator [9.98 h]; Compactor Operator [9.98 h]; Dump Truck Operator [9.98 h]; Water Truck Operator [9.98 h]; Labour [182.85 h]; Telecom Duct (Road Crossing) [327.95] | 21,417.32 | 21,417.32 | RD1 |
| RSZone 2Road 01Telecom NetworkA77990 |  | Zone 2 - Road 1 - Telecom Network - Telecom Duct - Test | 2d | 2026-11-05 A | 2026-11-10 | RSZone 2Road 01Telecom NetworkA78000 FF, RSZone 2Road 01Telecom NetworkA78000-old | 35% | 1.3d | 2026-11-03 | 2026-11-05 | 105.1d | 104.7d | Contract Price Original Scope [28604.1 SAR]; Pump Operator [20 h]; Equipment Operator [20 h]; Labour [244.21 h]; Telecom Duct (Road Crossing) [657] | 28,604.11 | 10,011.44 | RD1 |
| RSZone 2Road 01Telecom NetworkA78000 |  | Zone 2 - Road 1 - Telecom Network - Telecom Duct - Backfilling | 1d | 2026-11-09 | 2026-11-10 | RSZone 2Road 01Telecom NetworkA78000-old |  |  |  |  | 105.4d | 0.3d | Contract Price Original Scope [21488.8 SAR]; Excavator Operator [10.02 h]; Compactor Operator [10.02 h]; Dump Truck Operator [10.02 h]; Water Truck Operator [10.02 h]; Labour [183.46 h]; Telecom Duct (Road Crossing) [329.05] | 21,488.83 |  | RD1 |

| ID | WBS | Activity | Duration | Start | Finish | Predecessors | Complete | Planned start | Planned finish | Total float | Free float | Resources | Cost | Actual cost | MODON |
| --- | --- | --- | --- | --- | --- | --- | --- | --- | --- | --- | --- | --- | --- | --- | --- |
|  | 2 | **TELECOM MANHOLE** |  | 2026-08-24 | 2026-11-21 |  |  |  |  |  |  |  |  |  |  |
| RSZone 2Road 01Telecom NetworkA77920-old |  | Zone 2 - Road 1 - Telecom Network - TELECOM MANHOLE - Manhole Installation (old) | 59d | 2026-08-24 A | 2026-11-01 A | RSZone 1Road 32Telecom NetworkA68960-old | 100% |  |  |  |  | Contract Price Original Scope [727141 SAR]; Crane Operator [12.35 h]; Boom Truck Operator [12.35 h]; Equipment Operator [12.35 h]; Labour [6207.95 h]; Telecom Manhole [48.45] | 727,140.99 | 727,140.99 | RD1 |
| RSZone 2Road 01Telecom NetworkA77920 |  | Zone 2 - Road 1 - Telecom Network - TELECOM MANHOLE - Manhole Installation | 1d | 2026-11-21 | 2026-11-21 | RSZone 2Road 01Telecom NetworkA77920-old, RSZone 1Road 32Telecom NetworkA68960 |  |  |  | 76.4d | 0d | Contract Price Original Scope [38270.6 SAR]; Crane Operator [0.65 h]; Boom Truck Operator [0.65 h]; Equipment Operator [0.65 h]; Labour [326.73 h]; Telecom Manhole [2.55] | 38,270.58 |  | RD1 |
|  | 1 | **Main Road** |  | 2026-07-26 | 2027-01-04 |  |  |  |  |  |  |  |  |  |  |
| RSZone 2Road 01Main RoadA71940-old |  | Zone 2 - Road 1 - Main Road - Pre-Cast Cerb (old) | 84d | 2026-07-26 A | 2026-11-01 A | RSZone 1Road 02Main RoadA86130-old | 100% |  |  |  |  | Contract Price Original Scope [7538.68 SAR]; Compactor Operator [20.96 h]; Equipment Operator [20.96 h]; Water Truck Operator [20.96 h]; Labour [64.36 h]; Main Road - Curbstone [95] | 7,538.68 | 7,538.68 | RD1 |
| RSZone 2Road 01Main RoadA71940 |  | Zone 2 - Road 1 - Main Road - Pre-Cast Cerb | 19.58d | 2026-12-13 | 2027-01-04 | RSZone 2Road 01Main RoadA71940-old, RSZone 1Road 02Main RoadA86130 |  |  |  | 101.72d | 0d | Contract Price Original Scope [103949 SAR]; Compactor Operator [289.04 h]; Equipment Operator [289.04 h]; Water Truck Operator [289.04 h]; Labour [887.46 h]; Main Road - Curbstone [1310] | 103,948.81 |  | RD1 |
|  | 8 | **Road 8** |  | 2026-02-23 | 2027-01-09 |  |  |  |  |  |  |  |  |  |  |
|  | 9 | **Storm Network** |  | 2026-08-03 | 2026-11-16 |  |  |  |  |  |  |  |  |  |  |
|  | 1 | **Perforated 200 mm** |  | 2026-08-03 | 2026-11-10 |  |  |  |  |  |  |  |  |  |  |
| RSZone 2Road 08Storm NetworkA90560 |  | Zone 2 - Road 8 - Storm Network - Perforated 200 mm - Excavation | 6d | 2026-08-03 A | 2026-08-09 A | RSZone 2Road 01Storm NetworkA74310 | 100% |  |  |  |  | Contract Price Original Scope [48238.4 SAR]; Excavator Operator [30 h]; Dump Truck Operator [30 h]; Labour [411.83 h]; Perforated 200 mm [1903] | 48,238.43 | 48,238.43 | RD8 |
| RSZone 2Road 08Storm NetworkA90570 |  | Zone 2 - Road 8 - Storm Network - Perforated 200 mm - Bedding | 3d | 2026-08-10 A | 2026-08-12 A | RSZone 2Road 08Storm NetworkA90560 | 100% |  |  |  |  | Contract Price Original Scope [24119.2 SAR]; Compactor Operator [20 h]; Equipment Operator [20 h]; Water Truck Operator [20 h]; Labour [205.92 h]; Perforated 200 mm [1903] | 24,119.22 | 24,119.22 | RD8 |
| RSZone 2Road 08Storm NetworkA90580 |  | Zone 2 - Road 8 - Storm Network - Perforated 200 mm - Pipe Installation | 4d | 2026-08-13 A | 2026-08-17 A | RSZone 2Road 08Storm NetworkA90570 | 100% | 2026-08-13 | 2026-08-18 |  |  | Contract Price Original Scope [313550 SAR]; Excavator Operator [40 h]; Crane Operator [40 h]; Equipment Operator [40 h]; Labour [2676.93 h]; Perforated 200 mm [1903] | 313,549.83 | 313,549.83 | RD8 |
| RSZone 2Road 08Storm NetworkA90600 |  | Zone 2 - Road 8 - Storm Network - Perforated 200 mm - Backfilling | 2.9d | 2026-08-18 A | 2026-08-20 A | RSZone 2Road 08Storm NetworkA90580 | 100% |  |  |  |  | Contract Price Original Scope [48238.4 SAR]; Excavator Operator [20 h]; Compactor Operator [20 h]; Dump Truck Operator [20 h]; Water Truck Operator [20 h]; Labour [411.83 h]; Perforated 200 mm [1903] | 48,238.43 | 48,238.43 | RD8 |
| RSZone 2Road 08Storm NetworkA90590 |  | Zone 2 - Road 8 - Storm Network - Perforated 200 mm - Test | 2d | 2026-11-09 | 2026-11-10 | RSZone 2Road 08Storm NetworkA90600 |  |  |  | 123.4d | 109d | Contract Price Original Scope [48238.4 SAR]; Pump Operator [20 h]; Equipment Operator [20 h]; Labour [411.83 h]; Perforated 200 mm [1903] | 48,238.43 |  | RD8 |
|  | 3 | **Inspection Chamber** |  | 2026-08-05 | 2026-11-16 |  |  |  |  |  |  |  |  |  |  |
| RSZone 2Road 08Storm NetworkA90620 |  | Zone 2 - Road 8 - Storm Network - Inspection Chamber - Excavation | 4d | 2026-08-05 A | 2026-08-09 A | RSZone 2Road 08Storm NetworkA90600 | 100% |  |  |  |  | Contract Price Original Scope [74624.9 SAR]; Excavator Operator [30 h]; Dump Truck Operator [30 h]; Labour [637.11 h]; Inspection Chamber [18] | 74,624.94 | 74,624.94 | RD8 |
| RSZone 2Road 08Storm NetworkA90630 |  | Zone 2 - Road 8 - Storm Network - Inspection Chamber - IC Installation | 2d | 2026-08-10 A | 2026-08-11 A | RSZone 2Road 08Storm NetworkA90620 | 100% |  |  |  |  | Contract Price Original Scope [298500 SAR]; Crane Operator [40 h]; Boom Truck Operator [40 h]; Equipment Operator [40 h]; Labour [2548.44 h]; Inspection Chamber [18] | 298,499.74 | 298,499.74 | RD8 |
| RSZone 2Road 08Storm NetworkA90650 |  | Zone 2 - Road 8 - Storm Network - Inspection Chamber - Inner Isolation | 2d | 2026-11-09 | 2026-11-10 | RSZone 2Road 08Storm NetworkA90630 |  |  |  | 117.4d | 0d | Contract Price Original Scope [49750 SAR]; Equipment Operator [20 h]; Labour [424.74 h]; Inspection Chamber [18] | 49,749.96 |  | RD8 |
| RSZone 2Road 08Storm NetworkA90640 |  | Zone 2 - Road 8 - Storm Network - Inspection Chamber - D.I | 3d | 2026-11-11 | 2026-11-14 | RSZone 2Road 08Storm NetworkA90650 |  |  |  | 117.4d | 0d | Contract Price Original Scope [49750 SAR]; Crane Operator [7 h]; Boom Truck Operator [7 h]; Equipment Operator [7 h]; Labour [424.74 h]; Inspection Chamber [18] | 49,749.96 |  | RD8 |
| RSZone 2Road 08Storm NetworkA90660 |  | Zone 2 - Road 8 - Storm Network - Inspection Chamber - Backfilling | 2d | 2026-11-15 | 2026-11-16 | RSZone 2Road 08Storm NetworkA90640 |  |  |  | 118.4d | 104d | Contract Price Original Scope [24875 SAR]; Excavator Operator [20 h]; Compactor Operator [20 h]; Dump Truck Operator [20 h]; Water Truck Operator [20 h]; Labour [212.37 h]; Inspection Chamber [18] | 24,874.98 |  | RD8 |
|  | 8 | **Potable Water Network** |  | 2026-02-23 | 2026-11-24 |  |  |  |  |  |  |  |  |  |  |
|  | 1 | **Buried Valves** |  | 2026-03-08 | 2026-11-16 |  |  |  |  |  |  |  |  |  |  |
| RSZone 2Road 08Potable NetworkA75940 |  | Zone 2 - Road 8 - Potable Water Network - Buried Valves - Excavation | 4.9d | 2026-03-08 A | 2026-03-12 A | RSZone 1Road 32Potable NetworkA58040 | 100% |  |  |  |  | Contract Price Original Scope [160.19 SAR]; Excavator Operator [30 h]; Dump Truck Operator [30 h]; Labour [1.37 h]; Buried Valves [1] | 160.19 | 160.19 | RD8 |
| RSZone 2Road 08Potable NetworkA75950 |  | Zone 2 - Road 8 - Potable Water Network - Buried Valves - Installation | 2d | 2026-03-15 A | 2026-03-16 A | RSZone 2Road 08Potable NetworkA75940 | 100% |  |  |  |  | Contract Price Original Scope [2082.47 SAR]; Labour [17.78 h]; Buried Valves [1] | 2,082.47 | 2,082.47 | RD8 |
| RSZone 2Road 08Potable NetworkA75960 |  | Zone 2 - Road 8 - Potable Water Network - Buried Valves - Surface Box | 3d | 2026-11-09 | 2026-11-11 | RSZone 2Road 08Potable NetworkA75950 |  |  |  | 94.4d | 0d | Labour; Buried Valves [1] |  |  | RD8 |
| RSZone 2Road 08Potable NetworkA75970 |  | Zone 2 - Road 8 - Potable Water Network - Buried Valves - Test | 2d | 2026-11-12 | 2026-11-14 | RSZone 2Road 08Potable NetworkA75960 |  |  |  | 94.4d | 0d | Contract Price Original Scope [640.76 SAR]; Pump Operator [20 h]; Equipment Operator [20 h]; Labour [5.47 h]; Buried Valves [1] | 640.76 |  | RD8 |
| RSZone 2Road 08Potable NetworkA75980 |  | Zone 2 - Road 8 - Potable Water Network - Buried Valves - Backfilling | 2d | 2026-11-15 | 2026-11-16 | RSZone 2Road 08Potable NetworkA75970 |  |  |  | 94.4d | 94.2d | Contract Price Original Scope [320.38 SAR]; Excavator Operator [20 h]; Compactor Operator [20 h]; Dump Truck Operator [20 h]; Water Truck Operator [20 h]; Labour [2.74 h]; Buried Valves [1] | 320.38 |  | RD8 |

| ID | WBS | Activity | Duration | Start | Finish | Predecessors | Complete | Planned start | Planned finish | Total float | Free float | Resources | Cost | Actual cost | MODON |
| --- | --- | --- | --- | --- | --- | --- | --- | --- | --- | --- | --- | --- | --- | --- | --- |
|  | 6 | **Air Valve Chambers** |  | 2026-03-11 | 2026-11-21 |  |  |  |  |  |  |  |  |  |  |
| RSZone 2Road 08Potable NetworkA76900 |  | Zone 2 - Road 8 - Potable Water Network - Air Valve Chambers - Excavation | 5d | 2026-03-11 A | 2026-03-16 A | RSZone 2Road 08Potable NetworkA75950 | 100% |  |  |  |  | Contract Price Original Scope [1236.1 SAR]; Labour [10.55 h]; Air Valve Chambers [1] | 1,236.1 | 1,236.1 | RD8 |
| RSZone 2Road 08Potable NetworkA76910 |  | Zone 2 - Road 8 - Potable Water Network - Air Valve Chambers - Footings | 2.9d | 2026-03-17 A | 2026-03-19 A | RSZone 2Road 08Potable NetworkA76900 | 100% |  |  |  |  | Contract Price Original Scope [3708.3 SAR]; Labour [31.66 h]; Air Valve Chambers [1] | 3,708.3 | 3,708.3 | RD8 |
| RSZone 2Road 08Potable NetworkA76920 |  | Zone 2 - Road 8 - Potable Water Network - Air Valve Chambers - Walls | 7d | 2026-03-22 A | 2026-03-29 A | RSZone 2Road 08Potable NetworkA76910 | 100% |  |  |  |  | Contract Price Original Scope [4944.4 SAR]; Labour [42.21 h]; Air Valve Chambers [1] | 4,944.4 | 4,944.4 | RD8 |
| RSZone 2Road 08Potable NetworkA76930 |  | Zone 2 - Road 8 - Potable Water Network - Air Valve Chambers - Slab | 3.9d | 2026-03-30 A | 2026-04-02 A | RSZone 2Road 08Potable NetworkA76920 | 100% |  |  |  |  | Contract Price Original Scope [8652.71 SAR]; Labour [73.87 h]; Air Valve Chambers [1] | 8,652.71 | 8,652.71 | RD8 |
| RSZone 2Road 08Potable NetworkA76950 |  | Zone 2 - Road 8 - Potable Water Network - Air Valve Chambers - Internal Isolation | 3d | 2026-11-09 | 2026-11-11 | RSZone 2Road 08Potable NetworkA76930 |  |  |  | 90.4d | 0d | Contract Price Original Scope [1236.1 SAR]; Labour [10.55 h]; Air Valve Chambers [1] | 1,236.1 |  | RD8 |
| RSZone 2Road 08Potable NetworkA76940 |  | Zone 2 - Road 8 - Potable Water Network - Air Valve Chambers - D.I Cover | 3d | 2026-11-12 | 2026-11-15 | RSZone 2Road 08Potable NetworkA76950 |  |  |  | 90.4d | 0d | Contract Price Original Scope [2472.2 SAR]; Labour [21.11 h]; Air Valve Chambers [1] | 2,472.2 |  | RD8 |
| RSZone 2Road 08Potable NetworkA76960 |  | Zone 2 - Road 8 - Potable Water Network - Air Valve Chambers - External Isolation | 3d | 2026-11-16 | 2026-11-18 | RSZone 2Road 08Potable NetworkA76940 |  |  |  | 90.4d | 0d | Contract Price Original Scope [1236.1 SAR]; Labour [10.55 h]; Air Valve Chambers [1] | 1,236.1 |  | RD8 |
| RSZone 2Road 08Potable NetworkA76970 |  | Zone 2 - Road 8 - Potable Water Network - Air Valve Chambers - Backfilling | 2d | 2026-11-19 | 2026-11-21 | RSZone 2Road 08Potable NetworkA76960 |  |  |  | 90.4d | 90.2d | Contract Price Original Scope [1236.1 SAR]; Excavator Operator [20 h]; Compactor Operator [20 h]; Dump Truck Operator [20 h]; Water Truck Operator [20 h]; Labour [10.55 h]; Air Valve Chambers [1] | 1,236.1 |  | RD8 |
|  | 4 | **Washout Valve Chambers** |  | 2026-03-09 | 2026-11-24 |  |  |  |  |  |  |  |  |  |  |
| RSZone 2Road 08Potable NetworkA76820 |  | Zone 2 - Road 8 - Potable Water Network - Washout Valve Chambers - Excavation | 3d | 2026-03-09 A | 2026-03-11 A | RSZone 2Road 08Potable NetworkA76930 | 100% |  |  |  |  | Contract Price Original Scope [2691.66 SAR]; Labour [22.98 h]; Washout Valve Chambers [2] | 2,691.66 | 2,691.66 | RD8 |
| RSZone 2Road 08Potable NetworkA76830 |  | Zone 2 - Road 8 - Potable Water Network - Washout Valve Chambers - Footings | 4d | 2026-03-12 A | 2026-03-16 A | RSZone 2Road 08Potable NetworkA76820 | 100% | 2026-03-12 | 2026-03-17 |  |  | Contract Price Original Scope [8074.97 SAR]; Labour [68.94 h]; Washout Valve Chambers [2] | 8,074.97 | 8,074.97 | RD8 |
| RSZone 2Road 08Potable NetworkA76840 |  | Zone 2 - Road 8 - Potable Water Network - Washout Valve Chambers - Walls | 5d | 2026-03-17 A | 2026-03-22 A | RSZone 2Road 08Potable NetworkA76830 | 100% |  |  |  |  | Contract Price Original Scope [10766.6 SAR]; Labour [91.92 h]; Washout Valve Chambers [2] | 10,766.63 | 10,766.63 | RD8 |
| RSZone 2Road 08Potable NetworkA76850 |  | Zone 2 - Road 8 - Potable Water Network - Washout Valve Chambers - Slab | 3d | 2026-11-09 | 2026-11-11 | RSZone 2Road 08Potable NetworkA76840 |  |  |  | 87.4d | 0d | Contract Price Original Scope [18841.6 SAR]; Labour [160.86 h]; Washout Valve Chambers [2] | 18,841.6 |  | RD8 |
| RSZone 2Road 08Potable NetworkA76870 |  | Zone 2 - Road 8 - Potable Water Network - Washout Valve Chambers - Internal Isolation | 3d | 2026-11-12 | 2026-11-15 | RSZone 2Road 08Potable NetworkA76850 |  |  |  | 87.4d | 0d | Contract Price Original Scope [2691.66 SAR]; Labour [22.98 h]; Washout Valve Chambers [2] | 2,691.66 |  | RD8 |
| RSZone 2Road 08Potable NetworkA76860 |  | Zone 2 - Road 8 - Potable Water Network - Washout Valve Chambers - D.I Cover | 3d | 2026-11-16 | 2026-11-18 | RSZone 2Road 08Potable NetworkA76870 |  |  |  | 87.4d | 0d | Contract Price Original Scope [5383.32 SAR]; Labour [45.96 h]; Washout Valve Chambers [2] | 5,383.32 |  | RD8 |
| RSZone 2Road 08Potable NetworkA76880 |  | Zone 2 - Road 8 - Potable Water Network - Washout Valve Chambers - External Isolation | 3d | 2026-11-19 | 2026-11-22 | RSZone 2Road 08Potable NetworkA76860 |  |  |  | 87.4d | 0d | Contract Price Original Scope [2691.66 SAR]; Labour [22.98 h]; Washout Valve Chambers [2] | 2,691.66 |  | RD8 |
| RSZone 2Road 08Potable NetworkA76890 |  | Zone 2 - Road 8 - Potable Water Network - Washout Valve Chambers - Backfilling | 2d | 2026-11-23 | 2026-11-24 | RSZone 2Road 08Potable NetworkA76880 |  |  |  | 87.4d | 87.2d | Contract Price Original Scope [2691.66 SAR]; Excavator Operator [20 h]; Compactor Operator [20 h]; Dump Truck Operator [20 h]; Water Truck Operator [20 h]; Labour [22.98 h]; Washout Valve Chambers [2] | 2,691.66 |  | RD8 |
|  | 5 | **End Cap** |  | 2026-02-23 | 2026-02-25 |  |  |  |  |  |  |  |  |  |  |
| RSZone 2Road 08Potable NetworkA75700 |  | Zone 2 - Road 8 - Potable Water Network - End Cap - Installation | 3d | 2026-02-23 A | 2026-02-25 A | RSZone 2Road 08Potable NetworkA76840 | 100% |  |  |  |  | Contract Price Original Scope [730.98 SAR]; Labour [6.24 h]; Fittings - End Caps (all sizes) [1] | 730.98 | 730.98 | RD8 |
|  | 3 | **Elbows 200 MM** |  | 2026-08-06 | 2026-08-09 |  |  |  |  |  |  |  |  |  |  |
| RSZone 2Road 08Potable NetworkA90670 |  | Zone 2 - Road 8 - Potable Water Network - Elbows 200 MM - Installation | 3d | 2026-08-06 A | 2026-08-09 A | RSZone 2Road 08Potable NetworkA75700 | 100% | 2026-08-06 | 2026-08-10 |  |  | Contract Price Original Scope [9381.22 SAR]; Labour [80.09 h]; Fittings - Elbows (all sizes) [5] | 9,381.22 | 9,381.22 | RD8 |
|  | 7 | **FIRE HYDRANT** |  | 2026-08-17 | 2026-11-19 |  |  |  |  |  |  |  |  |  |  |
| RSZone 2Road 08Potable NetworkA77200-old |  | Zone 2 - Road 8 - Potable Water Network - FIRE HYDRANT - Excavation (old) | 65d | 2026-08-17 A | 2026-11-01 A | RSZone 2Road 08Potable NetworkA90670 | 100% |  |  |  |  | Contract Price Original Scope [22195 SAR]; Excavator Operator [28.23 h]; Dump Truck Operator [28.23 h]; Labour [189.49 h]; Fire Hydrant [16] | 22,194.97 | 22,194.97 | RD8 |
| RSZone 2Road 08Potable NetworkA77210-old |  | Zone 2 - Road 8 - Potable Water Network - FIRE HYDRANT - Buried Gate Valve Installation (old) | 63d | 2026-08-19 A | 2026-11-01 A | RSZone 2Road 08Potable NetworkA77200-old | 100% |  |  |  |  | Labour; Fire Hydrant [16] |  |  | RD8 |
| RSZone 2Road 08Potable NetworkA77220-old |  | Zone 2 - Road 8 - Potable Water Network - FIRE HYDRANT - Fire Hydrant Installation (old) | 62d | 2026-08-20 A | 2026-11-01 A | RSZone 2Road 08Potable NetworkA77210-old | 100% | 2026-08-20 | 2026-11-02 |  |  | Contract Price Original Scope [162023 SAR]; Labour [1383.27 h]; Fire Hydrant [16] | 162,023.29 | 162,023.29 | RD8 |
| RSZone 2Road 08Potable NetworkA77200 |  | Zone 2 - Road 8 - Potable Water Network - FIRE HYDRANT - Excavation | 1d | 2026-11-09 | 2026-11-09 | RSZone 2Road 08Potable NetworkA77200-old |  |  |  | 91.4d | 0d | Contract Price Original Scope [1388.82 SAR]; Excavator Operator [1.77 h]; Dump Truck Operator [1.77 h]; Labour [11.86 h]; Fire Hydrant [1] | 1,388.82 |  | RD8 |
| RSZone 2Road 08Potable NetworkA77210 |  | Zone 2 - Road 8 - Potable Water Network - FIRE HYDRANT - Buried Gate Valve Installation | 1d | 2026-11-10 | 2026-11-10 | RSZone 2Road 08Potable NetworkA77210-old, RSZone 2Road 08Potable NetworkA77200 |  |  |  | 91.4d | 0d | Labour; Fire Hydrant [1] |  |  | RD8 |
| RSZone 2Road 08Potable NetworkA77220 |  | Zone 2 - Road 8 - Potable Water Network - FIRE HYDRANT - Fire Hydrant Installation | 1d | 2026-11-11 | 2026-11-11 | RSZone 2Road 08Potable NetworkA77220-old, RSZone 2Road 08Potable NetworkA77210 |  |  |  | 91.4d | 0d | Contract Price Original Scope [10138.4 SAR]; Labour [86.56 h]; Fire Hydrant [1] | 10,138.41 |  | RD8 |
| RSZone 2Road 08Potable NetworkA77230 |  | Zone 2 - Road 8 - Potable Water Network - FIRE HYDRANT - Surface Box | 3d | 2026-11-12 | 2026-11-15 | RSZone 2Road 08Potable NetworkA77220, RSZone 2Road 08Potable NetworkA77200, RSZone 2Road 08Potable NetworkA77210 |  |  |  | 91.4d | 0d | Labour; Fire Hydrant [17] |  |  | RD8 |
| RSZone 2Road 08Potable NetworkA77240 |  | Zone 2 - Road 8 - Potable Water Network - FIRE HYDRANT - Test | 2d | 2026-11-16 | 2026-11-17 | RSZone 2Road 08Potable NetworkA77230 |  |  |  | 91.4d | 0d | Contract Price Original Scope [16508.7 SAR]; Pump Operator [20 h]; Equipment Operator [20 h]; Labour [140.94 h]; Fire Hydrant [17] | 16,508.66 |  | RD8 |
| RSZone 2Road 08Potable NetworkA77250 |  | Zone 2 - Road 8 - Potable Water Network - FIRE HYDRANT - Backfilling | 2d | 2026-11-18 | 2026-11-19 | RSZone 2Road 08Potable NetworkA77240 |  |  |  | 91.4d | 91.2d | Contract Price Original Scope [23583.8 SAR]; Excavator Operator [20 h]; Compactor Operator [20 h]; Dump Truck Operator [20 h]; Water Truck Operator [20 h]; Labour [201.35 h]; Fire Hydrant [17] | 23,583.79 |  | RD8 |

| ID | WBS | Activity | Duration | Start | Finish | Predecessors | Complete | Planned start | Planned finish | Total float | Free float | Resources | Cost | Actual cost | MODON |
| --- | --- | --- | --- | --- | --- | --- | --- | --- | --- | --- | --- | --- | --- | --- | --- |
|  | 2 | **Thurst Blocks** |  | 2026-08-02 | 2026-11-10 |  |  |  |  |  |  |  |  |  |  |
| RSZone 2Road 08Potable NetworkA75760-old |  | Zone 2 - Road 8 - Potable Water Network - Thurst Blocks - Thrust Block (old) | 78d | 2026-08-02 A | 2026-11-01 A | RSZone 2Road 08Potable NetworkA90670 | 100% |  |  |  |  | Contract Price Original Scope [23613.4 SAR]; Crane Operator [10.27 h]; Pump Operator [10.27 h]; Equipment Operator [10.27 h]; Labour [201.6 h]; Thrust Blocks [7] | 23,613.39 | 23,613.39 | RD8 |
| RSZone 2Road 08Potable NetworkA75760 |  | Zone 2 - Road 8 - Potable Water Network - Thurst Blocks - Thrust Block | 1.17d | 2026-11-09 | 2026-11-10 | RSZone 2Road 08Potable NetworkA75760-old |  |  |  | 100.23d | 100.03d | Contract Price Original Scope [26986.7 SAR]; Crane Operator [11.73 h]; Pump Operator [11.73 h]; Equipment Operator [11.73 h]; Labour [230.4 h]; Thrust Blocks [8] | 26,986.73 |  | RD8 |
|  | 1 | **Lateral Irrigation Network** |  | 2026-08-09 | 2027-01-09 |  |  |  |  |  |  |  |  |  |  |
|  | 1 | **HDPE Fitting** |  | 2026-08-10 | 2026-11-14 |  |  |  |  |  |  |  |  |  |  |
|  | 2 | **Tees** |  | 2026-08-10 | 2026-11-10 |  |  |  |  |  |  |  |  |  |  |
|  | 1 | **Tees for Pipe 125 MM** |  | 2026-10-11 | 2026-11-10 |  |  |  |  |  |  |  |  |  |  |
| RSZone 2Road 08Irrigation NetworkA91300- |  | Zone 2 - Road 8 - Lateral Irrigation Network - Tees for Pipe 125 MM - Installation (old) | 19d | 2026-10-11 A | 2026-11-01 A | RSZone 2Road 01Irrigation NetworkA70150 | 100% |  |  |  |  | Contract Price Original Scope [3072.12 SAR]; Labour [26.23 h]; Fittings - Tees (all sizes) [2] | 3,072.12 | 3,072.12 | RD8 |
| RSZone 2Road 08Irrigation NetworkA91300- |  | Zone 2 - Road 8 - Lateral Irrigation Network - Tees for Pipe 125 MM - Installation (old) | 1.5d | 2026-11-09 | 2026-11-10 | RSZone 2Road 08Irrigation NetworkA91300- |  |  |  | 96.9d | 0d | Contract Price Original Scope [3072.12 SAR]; Labour [26.23 h]; Fittings - Tees (all sizes) [2] | 3,072.12 |  | RD8 |
|  | 2 | **Tees for Pipe 500 MM** |  | 2026-08-10 | 2026-08-12 |  |  |  |  |  |  |  |  |  |  |
| RSZone 2Road 08Irrigation NetworkA91310 |  | Zone 2 - Road 8 - Lateral Irrigation Network - Tees for Pipe 500 MM - Installation | 3d | 2026-08-10 A | 2026-08-12 A | RSZone 2Road 01Irrigation NetworkA70150 | 100% |  |  |  |  | Contract Price Original Scope [6144.24 SAR]; Labour [52.46 h]; Fittings - Tees (all sizes) [4] | 6,144.24 | 6,144.24 | RD8 |
|  | 3 | **End Cap** |  | 2026-11-10 | 2026-11-14 |  |  |  |  |  |  |  |  |  |  |
|  | 1 | **End Cap for Pipe 125 MM** |  | 2026-11-10 | 2026-11-14 |  |  |  |  |  |  |  |  |  |  |
| RSZone 2Road 08Irrigation NetworkA90760 |  | Zone 2 - Road 8 - Lateral Irrigation Network - End Cap for Pipe 125 MM - Installation | 3d | 2026-11-10 | 2026-11-14 | RSZone 2Road 08Irrigation NetworkA91300- |  |  |  | 96.9d | 96.26d | Contract Price Original Scope [1494.36 SAR]; Labour [12.76 h]; Fittings - End Caps (all sizes) [4] | 1,494.36 |  | RD8 |
|  | 11 | **Valves** |  | 2026-09-03 | 2027-01-09 |  |  |  |  |  |  |  |  |  |  |
|  | 3 | **Buried Valves** |  | 2026-09-03 | 2026-11-16 |  |  |  |  |  |  |  |  |  |  |
| RSZone 2Road 08Irrigation NetworkA94990 |  | Zone 2 - Road 8 - Lateral Irrigation Network - Buried Valves - Excavation | 5d | 2026-09-03 A | 2026-09-08 A | RSZone 2Road 08Irrigation NetworkA91310 | 100% | 2026-09-03 | 2026-09-09 |  |  | Contract Price Original Scope [1950.44 SAR]; Excavator Operator [30 h]; Dump Truck Operator [30 h]; Labour [16.65 h]; Buried Valves [29] | 1,950.44 | 1,950.44 | RD8 |
| RSZone 2Road 08Irrigation NetworkA95000 |  | Zone 2 - Road 8 - Lateral Irrigation Network - Buried Valves - Installation | 1.9d | 2026-09-09 A | 2026-09-10 A | RSZone 2Road 08Irrigation NetworkA94990 | 100% |  |  |  |  | Contract Price Original Scope [25355.8 SAR]; Labour [216.47 h]; Buried Valves [29] | 25,355.75 | 25,355.75 | RD8 |
| RSZone 2Road 08Irrigation NetworkA95010 |  | Zone 2 - Road 8 - Lateral Irrigation Network - Buried Valves - Surface Box | 3d | 2026-11-09 | 2026-11-11 | RSZone 2Road 08Irrigation NetworkA95000 |  |  |  | 94.4d | 0d | Labour; Buried Valves [29] |  |  | RD8 |
| RSZone 2Road 08Irrigation NetworkA95020 |  | Zone 2 - Road 8 - Lateral Irrigation Network - Buried Valves - Test | 2d | 2026-11-12 | 2026-11-14 | RSZone 2Road 08Irrigation NetworkA95010 |  |  |  | 94.4d | 0d | Contract Price Original Scope [7801.77 SAR]; Pump Operator [20 h]; Equipment Operator [20 h]; Labour [66.61 h]; Buried Valves [29] | 7,801.77 |  | RD8 |
| RSZone 2Road 08Irrigation NetworkA95030 |  | Zone 2 - Road 8 - Lateral Irrigation Network - Buried Valves - Backfilling | 2d | 2026-11-15 | 2026-11-16 | RSZone 2Road 08Irrigation NetworkA95020 |  |  |  | 94.4d | 93.76d | Contract Price Original Scope [3900.88 SAR]; Excavator Operator [20 h]; Compactor Operator [20 h]; Dump Truck Operator [20 h]; Water Truck Operator [20 h]; Labour [33.3 h]; Buried Valves [29] | 3,900.88 |  | RD8 |
|  | 1 | **Butterfly Valves 500 MM** |  | 2026-12-27 | 2027-01-05 |  |  |  |  |  |  |  |  |  |  |
| RSZone 2Road 08Irrigation NetworkA90780 |  | Zone 2 - Road 8 - Lateral Irrigation Network - Butterfly Valves 500 MM - Surface Box | 3d | 2026-12-27 | 2026-12-30 | RSZone 2Road 01Irrigation NetworkA69990, RSZone 2Road 01Irrigation NetworkA69990 FF |  |  |  | 48.94d | 0d | Labour; Butterfly Valves [2] |  |  | RD8 |
| RSZone 2Road 08Irrigation NetworkA90770 |  | Zone 2 - Road 8 - Lateral Irrigation Network - Butterfly Valves 500 MM - Installation | 3d | 2026-12-30 | 2027-01-03 | RSZone 2Road 08Irrigation NetworkA90780 |  |  |  | 51.94d | 0d | Contract Price Original Scope [18168.7 SAR]; Labour [155.11 h]; Butterfly Valves [2] | 18,168.68 |  | RD8 |
| RSZone 2Road 08Irrigation NetworkA90790 |  | Zone 2 - Road 8 - Lateral Irrigation Network - Butterfly Valves 500 MM - Test | 2d | 2027-01-03 | 2027-01-05 | RSZone 2Road 08Irrigation NetworkA90770 |  |  |  | 51.94d | 51.3d | Contract Price Original Scope [7786.58 SAR]; Pump Operator [20 h]; Equipment Operator [20 h]; Labour [66.48 h]; Butterfly Valves [2] | 7,786.58 |  | RD8 |

| ID | WBS | Activity | Duration | Start | Finish | Predecessors | Complete | Total float | Free float | Resources | Cost | Actual cost | MODON |
| --- | --- | --- | --- | --- | --- | --- | --- | --- | --- | --- | --- | --- | --- |
|  | 2 | **Washout Valves 280 MM** |  | 2026-12-30 | 2027-01-09 |  |  |  |  |  |  |  |  |
| RSZone 2Road 08Irrigation NetworkA90820 |  | Zone 2 - Road 8 - Lateral Irrigation Network - Washout Valves 280 MM - Surface Box | 3d | 2026-12-30 | 2027-01-03 | RSZone 2Road 08Irrigation NetworkA90780 |  | 48.94d | 0d | Labour; Washout / Air / FlowMeter Valves [3] |  |  | RD8 |
| RSZone 2Road 08Irrigation NetworkA90810 |  | Zone 2 - Road 8 - Lateral Irrigation Network - Washout Valves 280 MM - Installation | 3d | 2027-01-03 | 2027-01-06 | RSZone 2Road 08Irrigation NetworkA90820 |  | 48.94d | 0d | Labour; Washout / Air / FlowMeter Valves [3] |  |  | RD8 |
| RSZone 2Road 08Irrigation NetworkA90830 |  | Zone 2 - Road 8 - Lateral Irrigation Network - Washout Valves 280 MM - Test | 2d | 2027-01-06 | 2027-01-09 | RSZone 2Road 08Irrigation NetworkA90810 |  | 48.94d | 48.3d | Pump Operator [20 h]; Equipment Operator [20 h]; Labour; Washout / Air / FlowMeter Valves [3] |  |  | RD8 |
|  | 2 | **Valve Champer** |  | 2026-08-09 | 2026-11-22 |  |  |  |  |  |  |  |  |
|  | 1 | **Isolation Champer** |  | 2026-08-19 | 2026-11-22 |  |  |  |  |  |  |  |  |
| RSZone 2Road 08Irrigation NetworkA90840 |  | Zone 2 - Road 8 - Lateral Irrigation Network - Isolation Champer - Excavation | 33d | 2026-08-19 A | 2026-09-27 A | RSZone 2Road 08Irrigation NetworkA95000 | 100% |  |  | Contract Price Original Scope [6372.33 SAR]; Labour [54.4 h]; Isolation Chambers [3] | 6,372.33 | 6,372.33 | RD8 |
| RSZone 2Road 08Irrigation NetworkA90850 |  | Zone 2 - Road 8 - Lateral Irrigation Network - Isolation Champer - Footings | 36d | 2026-08-19 A | 2026-09-30 A | RSZone 2Road 08Irrigation NetworkA90840 | 100% |  |  | Contract Price Original Scope [19117 SAR]; Labour [163.21 h]; Isolation Chambers [3] | 19,117 | 19,117 | RD8 |
| RSZone 2Road 08Irrigation NetworkA90860 |  | Zone 2 - Road 8 - Lateral Irrigation Network - Isolation Champer - Walls | 41d | 2026-08-19 A | 2026-10-06 A | RSZone 2Road 08Irrigation NetworkA90850 | 100% |  |  | Contract Price Original Scope [25489.3 SAR]; Labour [217.61 h]; Isolation Chambers [3] | 25,489.33 | 25,489.33 | RD8 |
| RSZone 2Road 08Irrigation NetworkA90870- |  | Zone 2 - Road 8 - Lateral Irrigation Network - Isolation Champer - Slab (old) | 17d | 2026-10-13 A | 2026-11-01 A | RSZone 2Road 08Irrigation NetworkA90860 | 100% |  |  | Contract Price Original Scope [44606.3 SAR]; Labour [380.83 h]; Isolation Chambers [3] | 44,606.32 | 44,606.32 | RD8 |
| RSZone 2Road 08Irrigation NetworkA90870- |  | Zone 2 - Road 8 - Lateral Irrigation Network - Isolation Champer - Slab (old) | 1d | 2026-11-09 | 2026-11-09 | RSZone 2Road 08Irrigation NetworkA90870- |  | 89.4d | 0d | Contract Price Original Scope [14868.8 SAR]; Labour [126.94 h]; Isolation Chambers [1] | 14,868.77 |  | RD8 |
| RSZone 2Road 08Irrigation NetworkA90880 |  | Zone 2 - Road 8 - Lateral Irrigation Network - Isolation Champer - D.I Cover | 3d | 2026-11-10 | 2026-11-12 | RSZone 2Road 08Irrigation NetworkA90870- |  | 89.4d | 0d | Contract Price Original Scope [16992.9 SAR]; Labour [145.08 h]; Isolation Chambers [4] | 16,992.89 |  | RD8 |
| RSZone 2Road 08Irrigation NetworkA90890 |  | Zone 2 - Road 8 - Lateral Irrigation Network - Isolation Champer - Internal Isolation | 3d | 2026-11-14 | 2026-11-16 | RSZone 2Road 08Irrigation NetworkA90880 |  | 89.4d | 0d | Contract Price Original Scope [8496.44 SAR]; Labour [72.54 h]; Isolation Chambers [4] | 8,496.44 |  | RD8 |
| RSZone 2Road 08Irrigation NetworkA90900 |  | Zone 2 - Road 8 - Lateral Irrigation Network - Isolation Champer - External Isolation | 3d | 2026-11-17 | 2026-11-19 | RSZone 2Road 08Irrigation NetworkA90890 |  | 89.4d | 0d | Contract Price Original Scope [6372.33 SAR]; Labour [54.4 h]; Isolation Chambers [3] | 6,372.33 |  | RD8 |
| RSZone 2Road 08Irrigation NetworkA90910 |  | Zone 2 - Road 8 - Lateral Irrigation Network - Isolation Champer - Backfilling | 2d | 2026-11-21 | 2026-11-22 | RSZone 2Road 08Irrigation NetworkA90900 |  | 89.4d | 88.76d | Contract Price Original Scope [6372.33 SAR]; Excavator Operator [20 h]; Compactor Operator [20 h]; Dump Truck Operator [20 h]; Water Truck Operator [20 h]; Labour [54.4 h]; Isolation Chambers [3] | 6,372.33 |  | RD8 |
|  | 2 | **Air Valves Champer** |  | 2026-08-09 | 2026-11-17 |  |  |  |  |  |  |  |  |
| RSZone 2Road 08Irrigation NetworkA90920 |  | Zone 2 - Road 8 - Lateral Irrigation Network - Air Valves Champer - Excavation | 3d | 2026-08-09 A | 2026-08-11 A | RSZone 2Road 08Irrigation NetworkA90860 | 100% |  |  | Contract Price Original Scope [4611.08 SAR]; Labour [39.37 h]; Air Valve Chambers [4] | 4,611.08 | 4,611.08 | RD8 |
| RSZone 2Road 08Irrigation NetworkA90930 |  | Zone 2 - Road 8 - Lateral Irrigation Network - Air Valves Champer - Footings | 6d | 2026-08-12 A | 2026-08-18 A | RSZone 2Road 08Irrigation NetworkA90920 | 100% |  |  | Contract Price Original Scope [13833.2 SAR]; Labour [118.1 h]; Air Valve Chambers [4] | 13,833.25 | 13,833.25 | RD8 |
| RSZone 2Road 08Irrigation NetworkA90940 |  | Zone 2 - Road 8 - Lateral Irrigation Network - Air Valves Champer - Walls | 7.9d | 2026-08-19 A | 2026-08-27 A | RSZone 2Road 08Irrigation NetworkA90930 | 100% |  |  | Contract Price Original Scope [18444.3 SAR]; Labour [157.47 h]; Air Valve Chambers [4] | 18,444.34 | 18,444.34 | RD8 |
| RSZone 2Road 08Irrigation NetworkA90970 |  | Zone 2 - Road 8 - Lateral Irrigation Network - Air Valves Champer - Internal Isolation | 2d | 2026-08-30 A | 2026-08-31 A | RSZone 2Road 08Irrigation NetworkA90940 | 100% |  |  | Contract Price Original Scope [4611.08 SAR]; Labour [39.37 h]; Air Valve Chambers [4] | 4,611.08 | 4,611.08 | RD8 |
| RSZone 2Road 08Irrigation NetworkA90980 |  | Zone 2 - Road 8 - Lateral Irrigation Network - Air Valves Champer - External Isolation | 2d | 2026-09-01 A | 2026-09-02 A | RSZone 2Road 08Irrigation NetworkA90970 | 100% |  |  | Contract Price Original Scope [4611.08 SAR]; Labour [39.37 h]; Air Valve Chambers [4] | 4,611.08 | 4,611.08 | RD8 |
| RSZone 2Road 08Irrigation NetworkA90950 |  | Zone 2 - Road 8 - Lateral Irrigation Network - Air Valves Champer - Slab | 3d | 2026-11-09 | 2026-11-11 | RSZone 2Road 08Irrigation NetworkA90980 |  | 93.4d | 0d | Contract Price Original Scope [32277.6 SAR]; Labour [275.57 h]; Air Valve Chambers [4] | 32,277.59 |  | RD8 |
| RSZone 2Road 08Irrigation NetworkA90960 |  | Zone 2 - Road 8 - Lateral Irrigation Network - Air Valves Champer - D.I Cover | 3d | 2026-11-12 | 2026-11-15 | RSZone 2Road 08Irrigation NetworkA90950 |  | 93.4d | 0d | Contract Price Original Scope [9222.17 SAR]; Labour [78.73 h]; Air Valve Chambers [4] | 9,222.17 |  | RD8 |
| RSZone 2Road 08Irrigation NetworkA90990 |  | Zone 2 - Road 8 - Lateral Irrigation Network - Air Valves Champer - Backfilling | 2d | 2026-11-16 | 2026-11-17 | RSZone 2Road 08Irrigation NetworkA90960 |  | 93.4d | 92.76d | Contract Price Original Scope [4611.08 SAR]; Excavator Operator [20 h]; Compactor Operator [20 h]; Dump Truck Operator [20 h]; Water Truck Operator [20 h]; Labour [39.37 h]; Air Valve Chambers [4] | 4,611.08 |  | RD8 |

| ID | WBS | Activity | Duration | Start | Finish | Predecessors | Complete | Remaining | Planned start | Planned finish | Total float | Free float | Resources | Cost | Actual cost | MODON |
| --- | --- | --- | --- | --- | --- | --- | --- | --- | --- | --- | --- | --- | --- | --- | --- | --- |
|  | 4 | **Thrust Block** |  | 2026-10-12 | 2026-11-09 |  |  |  |  |  |  |  |  |  |  |  |
| RSZone 2Road 08Irrigation NetworkA91170- |  | Zone 2 - Road 8 - Lateral Irrigation Network - Thrust Block - Thrust Block (old) | 18d | 2026-10-12 A | 2026-11-01 A | RSZone 2Road 08Irrigation NetworkA90980 | 100% |  |  |  |  |  | Contract Price Original Scope [6130.56 SAR]; Crane Operator [9 h]; Pump Operator [9 h]; Equipment Operator [9 h]; Labour [52.34 h]; Thrust Blocks [6] | 6,130.56 | 6,130.56 | RD8 |
| RSZone 2Road 08Irrigation NetworkA91170- |  | Zone 2 - Road 8 - Lateral Irrigation Network - Thrust Block - Thrust Block (old) | 1d | 2026-11-09 | 2026-11-09 | RSZone 2Road 08Irrigation NetworkA91170- |  |  |  |  | 100.4d | 99.76d | Contract Price Original Scope [2043.52 SAR]; Crane Operator [3 h]; Pump Operator [3 h]; Equipment Operator [3 h]; Labour [17.45 h]; Thrust Blocks [2] | 2,043.52 |  | RD8 |
|  | 3 | **Telecom** |  | 2026-08-20 | 2026-11-22 |  |  |  |  |  |  |  |  |  |  |  |
|  | 1 | **Telecom Pipe** |  | 2026-08-23 | 2026-11-12 |  |  |  |  |  |  |  |  |  |  |  |
| RSZone 2Road 08Telecom NetworkA78020-old |  | Zone 2 - Road 8 - Telecom Network - Telecom Pipe - Excavation (old) | 60d | 2026-08-23 A | 2026-11-01 A | RSZone 2Road 08Irrigation NetworkA90920 | 100% |  |  |  |  |  | Contract Price Original Scope [85831.3 SAR]; Excavator Operator [26.92 h]; Dump Truck Operator [26.92 h]; Labour [732.78 h]; Telecom Pipe [3982.77] | 85,831.33 | 85,831.33 | RD8 |
| RSZone 2Road 08Telecom NetworkA78030-old |  | Zone 2 - Road 8 - Telecom Network - Telecom Pipe - Concrete Pouring (old) | 58d | 2026-08-25 A | 2026-11-01 A | RSZone 2Road 08Telecom NetworkA78020-old | 100% |  |  |  |  |  | Contract Price Original Scope [404975 SAR]; Crane Operator [8.47 h]; Pump Operator [8.47 h]; Equipment Operator [8.47 h]; Labour [3457.47 h]; Telecom Pipe [2684.54] | 404,975.07 | 404,975.07 | RD8 |
| RSZone 2Road 08Telecom NetworkA78050-old |  | Zone 2 - Road 8 - Telecom Network - Telecom Pipe - Backfilling (old) | 57d | 2026-08-26 A | 2026-11-01 A | RSZone 2Road 08Telecom NetworkA78030-old | 100% |  |  |  |  |  | Contract Price Original Scope [32286.4 SAR]; Excavator Operator [6.75 h]; Compactor Operator [6.75 h]; Dump Truck Operator [6.75 h]; Water Truck Operator [6.75 h]; Labour [275.64 h]; Telecom Pipe [1498.16] | 32,286.4 | 32,286.4 | RD8 |
| RSZone 2Road 08Telecom NetworkA78040 |  | Zone 2 - Road 8 - Telecom Network - Telecom Pipe - Test | 2d | 2026-11-05 A | 2026-11-12 | RSZone 2Road 08Telecom NetworkA78050 FF, RSZone 2Road 08Telecom NetworkA78020 FF, RSZone 2Road 08Telecom NetworkA78030 FF, RSZone 2Road 08Telecom NetworkA78050-old | 23% | 1.53d | 2026-11-05 | 2026-11-08 | 103.08d | 102.67d | Contract Price Original Scope [95663.4 SAR]; Pump Operator [20 h]; Equipment Operator [20 h]; Labour [816.72 h]; Telecom Pipe [4439] | 95,663.4 | 22,401.18 | RD8 |
| RSZone 2Road 08Telecom NetworkA78020 |  | Zone 2 - Road 8 - Telecom Network - Telecom Pipe - Excavation | 1d | 2026-11-09 | 2026-11-09 | RSZone 2Road 08Telecom NetworkA78020-old |  |  |  |  | 103.08d | 0d | Contract Price Original Scope [9832.07 SAR]; Excavator Operator [3.08 h]; Dump Truck Operator [3.08 h]; Labour [83.94 h]; Telecom Pipe [456.23] | 9,832.07 |  | RD8 |
| RSZone 2Road 08Telecom NetworkA78030 |  | Zone 2 - Road 8 - Telecom Network - Telecom Pipe - Concrete Pouring | 1d | 2026-11-10 | 2026-11-10 | RSZone 2Road 08Telecom NetworkA78030-old, RSZone 2Road 08Telecom NetworkA78020 |  |  |  |  | 103.08d | 0d | Contract Price Original Scope [264669 SAR]; Crane Operator [5.53 h]; Pump Operator [5.53 h]; Equipment Operator [5.53 h]; Labour [2259.6 h]; Telecom Pipe [1754.46] | 264,668.74 |  | RD8 |
| RSZone 2Road 08Telecom NetworkA78050 |  | Zone 2 - Road 8 - Telecom Network - Telecom Pipe - Backfilling | 1.32d | 2026-11-11 | 2026-11-12 | RSZone 2Road 08Telecom NetworkA78050-old, RSZone 2Road 08Telecom NetworkA78030 |  |  |  |  | 103.08d | 0d | Contract Price Original Scope [63377 SAR]; Excavator Operator [13.25 h]; Compactor Operator [13.25 h]; Dump Truck Operator [13.25 h]; Water Truck Operator [13.25 h]; Labour [541.08 h]; Telecom Pipe [2940.84] | 63,377 |  | RD8 |
|  | 2 | **TELECOM MANHOLE** |  | 2026-08-20 | 2026-11-22 |  |  |  |  |  |  |  |  |  |  |  |
| RSZone 2Road 08Telecom NetworkA78010-old |  | Zone 2 - Road 8 - Telecom Network - TELECOM MANHOLE - Manhole Installation (old) | 62d | 2026-08-20 A | 2026-11-01 A | RSZone 2Road 01Telecom NetworkA77920-old | 100% |  | 2026-08-20 | 2026-11-02 |  |  | Contract Price Original Scope [171092 SAR]; Crane Operator [12.35 h]; Boom Truck Operator [12.35 h]; Equipment Operator [12.35 h]; Labour [1460.69 h]; Telecom Manhole [11.4] | 171,092 | 171,092 | RD8 |
| RSZone 2Road 08Telecom NetworkA78010 |  | Zone 2 - Road 8 - Telecom Network - TELECOM MANHOLE - Manhole Installation | 1d | 2026-11-22 | 2026-11-22 | RSZone 2Road 08Telecom NetworkA78010-old, RSZone 2Road 01Telecom NetworkA77920 |  |  |  |  | 76.4d | 0d | Contract Price Original Scope [9004.84 SAR]; Crane Operator [0.65 h]; Boom Truck Operator [0.65 h]; Equipment Operator [0.65 h]; Labour [76.88 h]; Telecom Manhole [0.6] | 9,004.84 |  | RD8 |
|  | 11 | **Road 10** |  | 2026-01-08 | 2027-02-13 |  |  |  |  |  |  |  |  |  |  |  |
|  | 8 | **Storm Network** |  | 2026-11-15 | 2026-11-17 |  |  |  |  |  |  |  |  |  |  |  |
|  | 8 | **Manhole** |  | 2026-11-15 | 2026-11-17 |  |  |  |  |  |  |  |  |  |  |  |
| RSZone 2Road 10Storm NetworkA91510 |  | Zone 2 - Road 10 - Storm Network - Manhole - COVER INSTALLATION | 3d | 2026-11-15 | 2026-11-17 | RSZone 2Road 08Storm NetworkA90640 |  |  |  |  | 117.4d | 103d | Contract Price Original Scope [88891.3 SAR]; Crane Operator [7 h]; Boom Truck Operator [7 h]; Equipment Operator [7 h]; Labour [758.91 h]; Manholes GRP (new + DI cover only) [32] | 88,891.31 |  | RD10 |
|  | 2 | **Sewage Network** |  | 2026-01-08 | 2026-11-16 |  |  |  |  |  |  |  |  |  |  |  |
|  | 5 | **UPVC Pipes 250 MM** |  | 2026-01-18 | 2026-02-03 |  |  |  |  |  |  |  |  |  |  |  |
| RSZone 2Road 10Sewage NetworkA72750 |  | Zone 2 - Road 10 - Sewage Network - UPVC Pipes 250 MM - Excavation | 3d | 2026-01-18 A | 2026-01-20 A | RSZone 1Road 30Sewage NetworkA34070 | 100% |  |  |  |  |  | Contract Price Original Scope [198.57 SAR]; Excavator Operator [30 h]; Dump Truck Operator [30 h]; Labour [1.7 h]; UPVC Pipes 250 MM [2] | 198.57 | 198.57 | RD10 |
| RSZone 2Road 10Sewage NetworkA72760 |  | Zone 2 - Road 10 - Sewage Network - UPVC Pipes 250 MM - Pipe Installation | 7d | 2026-01-21 A | 2026-01-28 A | RSZone 2Road 10Sewage NetworkA72750 | 100% |  |  |  |  |  | Contract Price Original Scope [860.47 SAR]; Excavator Operator [40 h]; Crane Operator [40 h]; Equipment Operator [40 h]; Labour [7.35 h]; UPVC Pipes 250 MM [2] | 860.47 | 860.47 | RD10 |
| RSZone 2Road 10Sewage NetworkA72770 |  | Zone 2 - Road 10 - Sewage Network - UPVC Pipes 250 MM - Test | 0.9d | 2026-01-29 A | 2026-01-30 A | RSZone 2Road 10Sewage NetworkA72760 | 100% |  | 2026-01-29 | 2026-01-29 |  |  | Contract Price Original Scope [132.38 SAR]; Pump Operator [20 h]; Equipment Operator [20 h]; Labour [1.13 h]; UPVC Pipes 250 MM [2] | 132.38 | 132.38 | RD10 |
| RSZone 2Road 10Sewage NetworkA72780 |  | Zone 2 - Road 10 - Sewage Network - UPVC Pipes 250 MM - Backfilling | 3d | 2026-02-01 A | 2026-02-03 A | RSZone 2Road 10Sewage NetworkA72770 | 100% |  |  |  |  |  | Contract Price Original Scope [132.38 SAR]; Excavator Operator [20 h]; Compactor Operator [20 h]; Dump Truck Operator [20 h]; Water Truck Operator [20 h]; Labour [1.13 h]; UPVC Pipes 250 MM [2] | 132.38 | 132.38 | RD10 |

| ID | WBS | Activity | Duration | Start | Finish | Predecessors | Complete | Planned start | Planned finish | Total float | Free float | Resources | Cost | Actual cost | MODON |
| --- | --- | --- | --- | --- | --- | --- | --- | --- | --- | --- | --- | --- | --- | --- | --- |
|  | 2 | **UPVC Pipes 200 MM** |  | 2026-01-15 | 2026-01-28 |  |  |  |  |  |  |  |  |  |  |
| RSZone 2Road 10Sewage NetworkA72590 |  | Zone 2 - Road 10 - Sewage Network - UPVC Pipes 200 MM - Excavation | 4d | 2026-01-15 A | 2026-01-19 A | RSZone 2Road 10Sewage NetworkA72780 | 100% | 2026-01-15 | 2026-01-20 |  |  | Contract Price Original Scope [383.43 SAR]; Excavator Operator [30 h]; Dump Truck Operator [30 h]; Labour [3.27 h]; UPVC Pipes 200 MM [5] | 383.43 | 383.43 | RD10 |
| RSZone 2Road 10Sewage NetworkA72600 |  | Zone 2 - Road 10 - Sewage Network - UPVC Pipes 200 MM - Pipe Installation | 5d | 2026-01-20 A | 2026-01-25 A | RSZone 2Road 10Sewage NetworkA72590 | 100% |  |  |  |  | Contract Price Original Scope [1661.51 SAR]; Excavator Operator [40 h]; Crane Operator [40 h]; Equipment Operator [40 h]; Labour [14.19 h]; UPVC Pipes 200 MM [5] | 1,661.51 | 1,661.51 | RD10 |
| RSZone 2Road 10Sewage NetworkA72610 |  | Zone 2 - Road 10 - Sewage Network - UPVC Pipes 200 MM - Test | 2d | 2026-01-26 A | 2026-01-27 A | RSZone 2Road 10Sewage NetworkA72600 | 100% |  |  |  |  | Contract Price Original Scope [255.62 SAR]; Pump Operator [20 h]; Equipment Operator [20 h]; Labour [2.18 h]; UPVC Pipes 200 MM [5] | 255.62 | 255.62 | RD10 |
| RSZone 2Road 10Sewage NetworkA72620 |  | Zone 2 - Road 10 - Sewage Network - UPVC Pipes 200 MM - Backfilling | 2d | 2026-01-27 A | 2026-01-28 A | RSZone 2Road 10Sewage NetworkA72610 | 100% |  |  |  |  | Contract Price Original Scope [255.62 SAR]; Excavator Operator [20 h]; Compactor Operator [20 h]; Dump Truck Operator [20 h]; Water Truck Operator [20 h]; Labour [2.18 h]; UPVC Pipes 200 MM [5] | 255.62 | 255.62 | RD10 |
|  | 1 | **UPVC Pipes 150 MM** |  | 2026-01-08 | 2026-01-25 |  |  |  |  |  |  |  |  |  |  |
| RSZone 2Road 10Sewage NetworkA71950 |  | Zone 2 - Road 10 - Sewage Network - UPVC Pipes 150 MM - Excavation | 5d | 2026-01-08 A | 2026-01-13 A | RSZone 2Road 10Sewage NetworkA72620 | 100% | 2026-01-08 | 2026-01-14 |  |  | Contract Price Original Scope [156.11 SAR]; Excavator Operator [30 h]; Dump Truck Operator [30 h]; Labour [1.33 h]; UPVC Pipes 150 MM [5] | 156.11 | 156.11 | RD10 |
| RSZone 2Road 10Sewage NetworkA71960 |  | Zone 2 - Road 10 - Sewage Network - UPVC Pipes 150 MM - Pipe Installation | 5d | 2026-01-14 A | 2026-01-19 A | RSZone 2Road 10Sewage NetworkA71950 | 100% |  |  |  |  | Contract Price Original Scope [676.5 SAR]; Excavator Operator [40 h]; Crane Operator [40 h]; Equipment Operator [40 h]; Labour [5.78 h]; UPVC Pipes 150 MM [5] | 676.5 | 676.5 | RD10 |
| RSZone 2Road 10Sewage NetworkA71970 |  | Zone 2 - Road 10 - Sewage Network - UPVC Pipes 150 MM - Test | 2d | 2026-01-20 A | 2026-01-21 A | RSZone 2Road 10Sewage NetworkA71960 | 100% |  |  |  |  | Contract Price Original Scope [104.08 SAR]; Pump Operator [20 h]; Equipment Operator [20 h]; Labour [0.89 h]; UPVC Pipes 150 MM [5] | 104.08 | 104.08 | RD10 |
| RSZone 2Road 10Sewage NetworkA71980 |  | Zone 2 - Road 10 - Sewage Network - UPVC Pipes 150 MM - Backfilling | 3d | 2026-01-22 A | 2026-01-25 A | RSZone 2Road 10Sewage NetworkA71970 | 100% | 2026-01-22 | 2026-01-26 |  |  | Contract Price Original Scope [104.08 SAR]; Excavator Operator [20 h]; Compactor Operator [20 h]; Dump Truck Operator [20 h]; Water Truck Operator [20 h]; Labour [0.89 h]; UPVC Pipes 150 MM [5] | 104.08 | 104.08 | RD10 |
|  | 8 | **Manhole** |  | 2026-08-11 | 2026-11-16 |  |  |  |  |  |  |  |  |  |  |
| RSZone 2Road 10Sewage NetworkA91540 |  | Zone 2 - Road 10 - Sewage Network - Manhole - Excavation | 2.9d | 2026-08-11 A | 2026-08-13 A | RSZone 2Road 10Sewage NetworkA71980 | 100% |  |  |  |  | Contract Price Original Scope [1900.28 SAR]; Excavator Operator [30 h]; Dump Truck Operator [30 h]; Labour [16.22 h]; Manholes (all depths, GRP) [1] | 1,900.28 | 1,900.28 | RD10 |
| RSZone 2Road 10Sewage NetworkA91550 |  | Zone 2 - Road 10 - Sewage Network - Manhole - FOOTING | 4d | 2026-08-16 A | 2026-08-19 A | RSZone 2Road 10Sewage NetworkA91540 | 100% |  |  |  |  | Contract Price Original Scope [11401.7 SAR]; Crane Operator [7 h]; Pump Operator [7 h]; Equipment Operator [7 h]; Labour [97.34 h]; Manholes (all depths, GRP) [1] | 11,401.7 | 11,401.7 | RD10 |
| RSZone 2Road 10Sewage NetworkA91560 |  | Zone 2 - Road 10 - Sewage Network - Manhole - MH INSTALLATION | 4d | 2026-08-20 A | 2026-08-24 A | RSZone 2Road 10Sewage NetworkA91550 | 100% | 2026-08-20 | 2026-08-25 |  |  | Contract Price Original Scope [13302 SAR]; Crane Operator [7 h]; Boom Truck Operator [7 h]; Equipment Operator [7 h]; Labour [113.57 h]; Manholes (all depths, GRP) [1] | 13,301.98 | 13,301.98 | RD10 |
| RSZone 2Road 10Sewage NetworkA91580 |  | Zone 2 - Road 10 - Sewage Network - Manhole - COVER INSTALLATION | 3d | 2026-11-09 | 2026-11-11 | RSZone 2Road 10Sewage NetworkA91560 |  |  |  | 98.4d | 0d | Contract Price Original Scope [45606.8 SAR]; Crane Operator [7 h]; Boom Truck Operator [7 h]; Equipment Operator [7 h]; Labour [389.37 h]; Manholes (all depths, GRP) [12] | 45,606.79 |  | RD10 |
| RSZone 2Road 10Sewage NetworkA91590 |  | Zone 2 - Road 10 - Sewage Network - Manhole - TEST | 2d | 2026-11-12 | 2026-11-14 | RSZone 2Road 10Sewage NetworkA91580 |  |  |  | 98.4d | 0d | Contract Price Original Scope [3800.57 SAR]; Pump Operator [20 h]; Equipment Operator [20 h]; Labour [32.45 h]; Manholes (all depths, GRP) [1] | 3,800.57 |  | RD10 |
| RSZone 2Road 10Sewage NetworkA91600 |  | Zone 2 - Road 10 - Sewage Network - Manhole - BACKFILLING | 2d | 2026-11-15 | 2026-11-16 | RSZone 2Road 10Sewage NetworkA91590 |  |  |  | 98.4d | 97.8d | Contract Price Original Scope [3800.57 SAR]; Excavator Operator [20 h]; Compactor Operator [20 h]; Dump Truck Operator [20 h]; Water Truck Operator [20 h]; Labour [32.45 h]; Manholes (all depths, GRP) [1] | 3,800.57 |  | RD10 |
|  | 13 | **Potable Water Network** |  | 2026-03-15 | 2026-11-30 |  |  |  |  |  |  |  |  |  |  |
|  | 8 | **Flow Meter Valves** |  | 2026-05-10 | 2026-11-30 |  |  |  |  |  |  |  |  |  |  |
| RSZone 2Road 10Potable NetworkA76690 |  | Zone 2 - Road 10 - Potable Water Network - Flow Meter Valves - Excavation | 4d | 2026-05-10 A | 2026-05-13 A | RSZone 2Road 08Potable NetworkA90670 | 100% |  |  |  |  | Contract Price Original Scope [11278.7 SAR]; Labour [96.29 h]; Flow Meter Chambers [3] | 11,278.69 | 11,278.69 | RD10 |
| RSZone 2Road 10Potable NetworkA76700 |  | Zone 2 - Road 10 - Potable Water Network - Flow Meter Valves - Footings | 4d | 2026-05-14 A | 2026-05-18 A | RSZone 2Road 10Potable NetworkA76690 | 100% | 2026-05-14 | 2026-05-19 |  |  | Contract Price Original Scope [33836.1 SAR]; Labour [288.87 h]; Flow Meter Chambers [3] | 33,836.06 | 33,836.06 | RD10 |
| RSZone 2Road 10Potable NetworkA76710-old |  | Zone 2 - Road 10 - Potable Water Network - Flow Meter Valves - Walls (old) | 66d | 2026-08-16 A | 2026-11-01 A | RSZone 2Road 10Potable NetworkA76700 | 100% |  |  |  |  | Contract Price Original Scope [15038.2 SAR]; Labour [128.39 h]; Flow Meter Chambers [1] | 15,038.25 | 15,038.25 | RD10 |
| RSZone 2Road 10Potable NetworkA76710 |  | Zone 2 - Road 10 - Potable Water Network - Flow Meter Valves - Walls | 2d | 2026-11-09 | 2026-11-10 | RSZone 2Road 10Potable NetworkA76710-old |  |  |  | 82.4d | 0d | Contract Price Original Scope [30076.5 SAR]; Labour [256.78 h]; Flow Meter Chambers [2] | 30,076.49 |  | RD10 |
| RSZone 2Road 10Potable NetworkA76720 |  | Zone 2 - Road 10 - Potable Water Network - Flow Meter Valves - Slab | 3d | 2026-11-11 | 2026-11-14 | RSZone 2Road 10Potable NetworkA76710 |  |  |  | 82.4d | 0d | Contract Price Original Scope [78950.8 SAR]; Labour [674.04 h]; Flow Meter Chambers [3] | 78,950.8 |  | RD10 |
| RSZone 2Road 10Potable NetworkA91660 |  | Zone 2 - Road 10 - Potable Water Network - Flow Meter Valves - Internal Isolation | 3d | 2026-11-15 | 2026-11-17 | RSZone 2Road 10Potable NetworkA76720 |  |  |  | 82.4d | 0d | Contract Price Original Scope [37595.6 SAR]; Labour [320.97 h]; Flow Meter Chambers [10] | 37,595.62 |  | RD10 |
| RSZone 2Road 10Potable NetworkA91650 |  | Zone 2 - Road 10 - Potable Water Network - Flow Meter Valves - D.I Cover | 3d | 2026-11-18 | 2026-11-21 | RSZone 2Road 10Potable NetworkA91660 |  |  |  | 82.4d | 0d | Contract Price Original Scope [75191.2 SAR]; Labour [641.94 h]; Flow Meter Chambers [10] | 75,191.24 |  | RD10 |
| RSZone 2Road 10Potable NetworkA76730 |  | Zone 2 - Road 10 - Potable Water Network - Flow Meter Valves - Valve Installation | 3d | 2026-11-22 | 2026-11-24 | RSZone 2Road 10Potable NetworkA91650 |  |  |  | 82.4d | 0d | Contract Price Original Scope [21164.9 SAR]; Labour [180.7 h]; Flow Meter Chambers [10] | 21,164.94 |  | RD10 |
| RSZone 2Road 10Potable NetworkA91670 |  | Zone 2 - Road 10 - Potable Water Network - Flow Meter Valves - External Isolation | 3d | 2026-11-25 | 2026-11-28 | RSZone 2Road 10Potable NetworkA76730 |  |  |  | 82.4d | 0d | Contract Price Original Scope [11278.7 SAR]; Labour [96.29 h]; Flow Meter Chambers [3] | 11,278.69 |  | RD10 |
| RSZone 2Road 10Potable NetworkA91680 |  | Zone 2 - Road 10 - Potable Water Network - Flow Meter Valves - Backfilling | 2d | 2026-11-29 | 2026-11-30 | RSZone 2Road 10Potable NetworkA91670 |  |  |  | 82.4d | 82.2d | Contract Price Original Scope [37595.6 SAR]; Excavator Operator [20 h]; Compactor Operator [20 h]; Dump Truck Operator [20 h]; Water Truck Operator [20 h]; Labour [320.97 h]; Flow Meter Chambers [10] | 37,595.62 |  | RD10 |

| ID | WBS | Activity | Duration | Start | Finish | Predecessors | Complete | Total float | Free float | Resources | Cost | Actual cost | MODON |
| --- | --- | --- | --- | --- | --- | --- | --- | --- | --- | --- | --- | --- | --- |
|  | 11 | **Air Valve Chambers** |  | 2026-03-15 | 2026-11-21 |  |  |  |  |  |  |  |  |
| RSZone 2Road 10Potable NetworkA77060 |  | Zone 2 - Road 10 - Potable Water Network - Air Valve Chambers - Excavation | 3d | 2026-03-15 A | 2026-03-17 A | RSZone 2Road 10Potable NetworkA76700 | 100% |  |  | Contract Price Original Scope [1236.1 SAR]; Labour [10.55 h]; Air Valve Chambers [1] | 1,236.1 | 1,236.1 | RD10 |
| RSZone 2Road 10Potable NetworkA77070 |  | Zone 2 - Road 10 - Potable Water Network - Air Valve Chambers - Footings | 5d | 2026-03-18 A | 2026-03-23 A | RSZone 2Road 10Potable NetworkA77060 | 100% |  |  | Contract Price Original Scope [3708.3 SAR]; Labour [31.66 h]; Air Valve Chambers [1] | 3,708.3 | 3,708.3 | RD10 |
| RSZone 2Road 10Potable NetworkA77080 |  | Zone 2 - Road 10 - Potable Water Network - Air Valve Chambers - Walls | 6d | 2026-03-24 A | 2026-03-30 A | RSZone 2Road 10Potable NetworkA77070 | 100% |  |  | Contract Price Original Scope [4944.4 SAR]; Labour [42.21 h]; Air Valve Chambers [1] | 4,944.4 | 4,944.4 | RD10 |
| RSZone 2Road 10Potable NetworkA77090 |  | Zone 2 - Road 10 - Potable Water Network - Air Valve Chambers - Slab | 2.9d | 2026-03-31 A | 2026-04-02 A | RSZone 2Road 10Potable NetworkA77080 | 100% |  |  | Contract Price Original Scope [8652.71 SAR]; Labour [73.87 h]; Air Valve Chambers [1] | 8,652.71 | 8,652.71 | RD10 |
| RSZone 2Road 10Potable NetworkA77110 |  | Zone 2 - Road 10 - Potable Water Network - Air Valve Chambers - Internal Isolation | 3d | 2026-11-09 | 2026-11-11 | RSZone 2Road 10Potable NetworkA77090 |  | 90.4d | 0d | Contract Price Original Scope [1236.1 SAR]; Labour [10.55 h]; Air Valve Chambers [1] | 1,236.1 |  | RD10 |
| RSZone 2Road 10Potable NetworkA77100 |  | Zone 2 - Road 10 - Potable Water Network - Air Valve Chambers - D.I Cover | 3d | 2026-11-12 | 2026-11-15 | RSZone 2Road 10Potable NetworkA77110 |  | 90.4d | 0d | Contract Price Original Scope [2472.2 SAR]; Labour [21.11 h]; Air Valve Chambers [1] | 2,472.2 |  | RD10 |
| RSZone 2Road 10Potable NetworkA77120 |  | Zone 2 - Road 10 - Potable Water Network - Air Valve Chambers - External Isolation | 3d | 2026-11-16 | 2026-11-18 | RSZone 2Road 10Potable NetworkA77100 |  | 90.4d | 0d | Contract Price Original Scope [1236.1 SAR]; Labour [10.55 h]; Air Valve Chambers [1] | 1,236.1 |  | RD10 |
| RSZone 2Road 10Potable NetworkA77130 |  | Zone 2 - Road 10 - Potable Water Network - Air Valve Chambers - Backfilling | 2d | 2026-11-19 | 2026-11-21 | RSZone 2Road 10Potable NetworkA77120 |  | 90.4d | 90.2d | Contract Price Original Scope [1236.1 SAR]; Excavator Operator [20 h]; Compactor Operator [20 h]; Dump Truck Operator [20 h]; Water Truck Operator [20 h]; Labour [10.55 h]; Air Valve Chambers [1] | 1,236.1 |  | RD10 |
|  | 1 | **Thurst Blocks** |  | 2026-08-09 | 2026-11-09 |  |  |  |  |  |  |  |  |
| RSZone 2Road 10Potable NetworkA75770-old |  | Zone 2 - Road 10 - Potable Water Network - Thurst Blocks - Thrust Block (old) | 72d | 2026-08-09 A | 2026-11-01 A | RSZone 2Road 10Potable NetworkA77060 | 100% |  |  | Contract Price Original Scope [16866.7 SAR]; Crane Operator [13.75 h]; Pump Operator [13.75 h]; Equipment Operator [13.75 h]; Labour [144 h]; Thrust Blocks [5] | 16,866.7 | 16,866.7 | RD10 |
| RSZone 2Road 10Potable NetworkA75770 |  | Zone 2 - Road 10 - Potable Water Network - Thurst Blocks - Thrust Block | 1d | 2026-11-09 | 2026-11-09 | RSZone 2Road 10Potable NetworkA75770-old |  | 100.4d | 100.2d | Contract Price Original Scope [10120 SAR]; Crane Operator [8.25 h]; Pump Operator [8.25 h]; Equipment Operator [8.25 h]; Labour [86.4 h]; Thrust Blocks [3] | 10,120.02 |  | RD10 |
|  | 9 | **Road Crossing** |  | 2026-12-26 | 2027-02-13 |  |  |  |  |  |  |  |  |
|  | 5 | **Rood Crossing UPVC Selves 300 MM** |  | 2026-12-26 | 2027-01-19 |  |  |  |  |  |  |  |  |
| RSZone 2Road 10Road CrossingA68970 |  | Zone 2 - Road 10 - Road Crossing - Rood Crossing UPVC Selves 300 MM - Rood Crossing UPVC Selves | 21d | 2026-12-26 | 2027-01-19 | RSZone 1Road 26Road CrossingA21860, RSZone 1Road 25Road CrossingA21870, RSZone 1Road 24Road CrossingA21880, RSZone 1Road 02Road CrossingA29880 |  | 0.21d | 0d | Contract Price Original Scope [82490.1 SAR]; Excavator Operator [145 h]; Crane Operator [145 h]; Equipment Operator [145 h]; Labour [704.26 h]; Road Crossing Sleeves 300 mm [193] | 82,490.13 |  | RD10 |
|  | 6 | **Rood Crossing UPVC Selves 400MM** |  | 2027-01-19 | 2027-02-13 |  |  |  |  |  |  |  |  |
| RSZone 2Road 10Road CrossingA68980 |  | Zone 2 - Road 10 - Road Crossing - Rood Crossing UPVC Selves 400MM - Rood Crossing UPVC Selves | 21d | 2027-01-19 | 2027-02-13 | RSZone 2Road 10Road CrossingA68970 |  | 0.21d | 0d | Contract Price Original Scope [33942.2 SAR]; Excavator Operator [145 h]; Crane Operator [145 h]; Equipment Operator [145 h]; Labour [289.78 h]; Road Crossing Sleeves 400 mm [58] | 33,942.18 |  | RD10 |
|  | 12 | **Road 11** |  | 2026-01-11 | 2026-11-29 |  |  |  |  |  |  |  |  |
|  | 10 | **Storm Network** |  | 2026-01-20 | 2026-11-19 |  |  |  |  |  |  |  |  |
|  | 1 | **Collection Pipes 150 MM** |  | 2026-01-20 | 2026-11-12 |  |  |  |  |  |  |  |  |
| RSZone 2Road 11Storm NetworkA72910 |  | Zone 2 - Road 11 - Storm Network - Collection Pipes 150 MM - Excavation | 2.9d | 2026-01-20 A | 2026-01-22 A | RSZone 2Road 08Storm NetworkA90630 | 100% |  |  | Contract Price Original Scope [2489.9 SAR]; Excavator Operator [30 h]; Dump Truck Operator [30 h]; Labour [21.26 h]; Collection Pipes 150 MM [521] | 2,489.9 | 2,489.9 | RD11 |
| RSZone 2Road 11Storm NetworkA72920 |  | Zone 2 - Road 11 - Storm Network - Collection Pipes 150 MM - Bedding | 3d | 2026-01-25 A | 2026-01-27 A | RSZone 2Road 11Storm NetworkA72910 | 100% |  |  | Contract Price Original Scope [1244.95 SAR]; Compactor Operator [20 h]; Equipment Operator [20 h]; Water Truck Operator [20 h]; Labour [10.63 h]; Collection Pipes 150 MM [521] | 1,244.95 | 1,244.95 | RD11 |
| RSZone 2Road 11Storm NetworkA72930 |  | Zone 2 - Road 11 - Storm Network - Collection Pipes 150 MM - Pipe Installation | 5d | 2026-01-28 A | 2026-02-02 A | RSZone 2Road 11Storm NetworkA72920 | 100% |  |  | Contract Price Original Scope [16184.3 SAR]; Excavator Operator [40 h]; Crane Operator [40 h]; Equipment Operator [40 h]; Labour [138.17 h]; Collection Pipes 150 MM [521] | 16,184.32 | 16,184.32 | RD11 |
| RSZone 2Road 11Storm NetworkA72940 |  | Zone 2 - Road 11 - Storm Network - Collection Pipes 150 MM - Test | 2d | 2026-11-09 | 2026-11-10 | RSZone 2Road 11Storm NetworkA72930 |  | 121.4d | 0d | Contract Price Original Scope [2489.9 SAR]; Pump Operator [20 h]; Equipment Operator [20 h]; Labour [21.26 h]; Collection Pipes 150 MM [521] | 2,489.9 |  | RD11 |
| RSZone 2Road 11Storm NetworkA72950 |  | Zone 2 - Road 11 - Storm Network - Collection Pipes 150 MM - Backfilling | 2d | 2026-11-11 | 2026-11-12 | RSZone 2Road 11Storm NetworkA72940 |  | 121.4d | 107d | Contract Price Original Scope [2489.9 SAR]; Excavator Operator [20 h]; Compactor Operator [20 h]; Dump Truck Operator [20 h]; Water Truck Operator [20 h]; Labour [21.26 h]; Collection Pipes 150 MM [521] | 2,489.9 |  | RD11 |

| ID | WBS | Activity | Duration | Start | Finish | Predecessors | Complete | Planned start | Planned finish | Total float | Free float | Resources | Cost | Actual cost | MODON |
| --- | --- | --- | --- | --- | --- | --- | --- | --- | --- | --- | --- | --- | --- | --- | --- |
|  | 8 | **Perforated 200 mm** |  | 2026-02-03 | 2026-11-10 |  |  |  |  |  |  |  |  |  |  |
| RSZone 2Road 11Storm NetworkA74260 |  | Zone 2 - Road 11 - Storm Network - Perforated 200 mm - Excavation | 5d | 2026-02-03 A | 2026-02-08 A | RSZone 2Road 11Storm NetworkA72930 | 100% |  |  |  |  | Contract Price Original Scope [51001.4 SAR]; Excavator Operator [30 h]; Dump Truck Operator [30 h]; Labour [435.42 h]; Perforated 200 mm [2012] | 51,001.43 | 51,001.43 | RD11 |
| RSZone 2Road 11Storm NetworkA74270 |  | Zone 2 - Road 11 - Storm Network - Perforated 200 mm - Bedding | 2d | 2026-02-09 A | 2026-02-10 A | RSZone 2Road 11Storm NetworkA74260 | 100% |  |  |  |  | Contract Price Original Scope [25500.7 SAR]; Compactor Operator [20 h]; Equipment Operator [20 h]; Water Truck Operator [20 h]; Labour [217.71 h]; Perforated 200 mm [2012] | 25,500.72 | 25,500.72 | RD11 |
| RSZone 2Road 11Storm NetworkA74280 |  | Zone 2 - Road 11 - Storm Network - Perforated 200 mm - Pipe Installation | 2.9d | 2026-02-10 A | 2026-02-12 A | RSZone 2Road 11Storm NetworkA74270 | 100% |  |  |  |  | Contract Price Original Scope [331509 SAR]; Excavator Operator [40 h]; Crane Operator [40 h]; Equipment Operator [40 h]; Labour [2830.26 h]; Perforated 200 mm [2012] | 331,509.33 | 331,509.33 | RD11 |
| RSZone 2Road 11Storm NetworkA74300 |  | Zone 2 - Road 11 - Storm Network - Perforated 200 mm - Backfilling | 4d | 2026-02-15 A | 2026-02-18 A | RSZone 2Road 11Storm NetworkA74280 | 100% |  |  |  |  | Contract Price Original Scope [51001.4 SAR]; Excavator Operator [20 h]; Compactor Operator [20 h]; Dump Truck Operator [20 h]; Water Truck Operator [20 h]; Labour [435.42 h]; Perforated 200 mm [2012] | 51,001.43 | 51,001.43 | RD11 |
| RSZone 2Road 11Storm NetworkA74290 |  | Zone 2 - Road 11 - Storm Network - Perforated 200 mm - Test | 2d | 2026-11-09 | 2026-11-10 | RSZone 2Road 11Storm NetworkA74300 |  |  |  | 123.4d | 109d | Contract Price Original Scope [51001.4 SAR]; Pump Operator [20 h]; Equipment Operator [20 h]; Labour [435.42 h]; Perforated 200 mm [2012] | 51,001.43 |  | RD11 |
|  | 7 | **Soakaway** |  | 2026-03-29 | 2026-11-14 |  |  |  |  |  |  |  |  |  |  |
| RSZone 2Road 11Storm NetworkA73560 |  | Zone 2 - Road 11 - Storm Network - Soakaway - Excavation | 3d | 2026-03-29 A | 2026-03-31 A | RSZone 2Road 11Storm NetworkA74300 | 100% |  |  |  |  | Contract Price Original Scope [6381.45 SAR]; Excavator Operator [30 h]; Dump Truck Operator [30 h]; Labour [54.48 h]; Soakaway [2] | 6,381.45 | 6,381.45 | RD11 |
| RSZone 2Road 11Storm NetworkA73570 |  | Zone 2 - Road 11 - Storm Network - Soakaway - Installation | 4d | 2026-04-01 A | 2026-04-05 A | RSZone 2Road 11Storm NetworkA73560 | 100% |  |  |  |  | Contract Price Original Scope [25525.8 SAR]; Crane Operator [7 h]; Equipment Operator [7 h]; Labour [217.93 h]; Soakaway [2] | 25,525.8 | 25,525.8 | RD11 |
| RSZone 2Road 11Storm NetworkA73590-old |  | Zone 2 - Road 11 - Storm Network - Soakaway - Inner Isolation (old) | 80d | 2026-07-30 A | 2026-11-01 A | RSZone 2Road 11Storm NetworkA73570 | 100% | 2026-07-30 | 2026-11-02 |  |  | Contract Price Original Scope [2127.15 SAR]; Equipment Operator [10 h]; Labour [18.16 h]; Soakaway [1] | 2,127.15 | 2,127.15 | RD11 |
| RSZone 2Road 11Storm NetworkA73600-old |  | Zone 2 - Road 11 - Storm Network - Soakaway - Backfilling (old) | 78d | 2026-08-02 A | 2026-11-01 A | RSZone 2Road 11Storm NetworkA73590-old | 100% |  |  |  |  | Contract Price Original Scope [1063.58 SAR]; Excavator Operator [10 h]; Compactor Operator [10 h]; Dump Truck Operator [10 h]; Water Truck Operator [10 h]; Labour [9.08 h]; Soakaway [1] | 1,063.58 | 1,063.58 | RD11 |
| RSZone 2Road 11Storm NetworkA73590 |  | Zone 2 - Road 11 - Storm Network - Soakaway - Inner Isolation | 1d | 2026-11-09 | 2026-11-09 | RSZone 2Road 11Storm NetworkA73590-old |  |  |  | 115.4d | 0d | Contract Price Original Scope [2127.15 SAR]; Equipment Operator [10 h]; Labour [18.16 h]; Soakaway [1] | 2,127.15 |  | RD11 |
| RSZone 2Road 11Storm NetworkA73580 |  | Zone 2 - Road 11 - Storm Network - Soakaway - D.I | 3d | 2026-11-10 | 2026-11-12 | RSZone 2Road 11Storm NetworkA73590 |  |  |  | 115.4d | 0d | Contract Price Original Scope [4254.3 SAR]; Crane Operator [7 h]; Boom Truck Operator [7 h]; Equipment Operator [7 h]; Labour [36.32 h]; Soakaway [2] | 4,254.3 |  | RD11 |
| RSZone 2Road 11Storm NetworkA73600 |  | Zone 2 - Road 11 - Storm Network - Soakaway - Backfilling | 1d | 2026-11-14 | 2026-11-14 | RSZone 2Road 11Storm NetworkA73600-old, RSZone 2Road 11Storm NetworkA73590, RSZone 2Road 11Storm NetworkA73580 |  |  |  | 115.4d | 0d | Contract Price Original Scope [1063.58 SAR]; Excavator Operator [10 h]; Compactor Operator [10 h]; Dump Truck Operator [10 h]; Water Truck Operator [10 h]; Labour [9.08 h]; Soakaway [1] | 1,063.58 |  | RD11 |
|  | 4 | **Gully outfalls** |  | 2026-01-25 | 2026-11-16 |  |  |  |  |  |  |  |  |  |  |
| RSZone 2Road 11Storm NetworkA73160 |  | Zone 2 - Road 11 - Storm Network - Gully outfalls - Excavation | 4d | 2026-01-25 A | 2026-01-28 A | RSZone 2Road 11Storm NetworkA73570 | 100% |  |  |  |  | Contract Price Original Scope [10046.3 SAR]; Excavator Operator [30 h]; Dump Truck Operator [30 h]; Labour [85.77 h]; Gully outfalls [10] | 10,046.28 | 10,046.28 | RD11 |
| RSZone 2Road 11Storm NetworkA73170 |  | Zone 2 - Road 11 - Storm Network - Gully outfalls - Installation | 3d | 2026-01-29 A | 2026-02-01 A | RSZone 2Road 11Storm NetworkA73160 | 100% | 2026-01-29 | 2026-02-02 |  |  | Contract Price Original Scope [40185.1 SAR]; Crane Operator [7 h]; Equipment Operator [7 h]; Labour [343.08 h]; Gully outfalls [10] | 40,185.13 | 40,185.13 | RD11 |
| RSZone 2Road 11Storm NetworkA73180 |  | Zone 2 - Road 11 - Storm Network - Gully outfalls - D.I | 3d | 2026-11-09 | 2026-11-11 | RSZone 2Road 11Storm NetworkA73170 |  |  |  | 118.4d | 0d | Contract Price Original Scope [6697.52 SAR]; Crane Operator [7 h]; Boom Truck Operator [7 h]; Equipment Operator [7 h]; Labour [57.18 h]; Gully outfalls [10] | 6,697.52 |  | RD11 |
| RSZone 2Road 11Storm NetworkA73190 |  | Zone 2 - Road 11 - Storm Network - Gully outfalls - Inner Isolation | 2d | 2026-11-12 | 2026-11-14 | RSZone 2Road 11Storm NetworkA73180 |  |  |  | 118.4d | 0d | Contract Price Original Scope [6697.52 SAR]; Equipment Operator [20 h]; Labour [57.18 h]; Gully outfalls [10] | 6,697.52 |  | RD11 |
| RSZone 2Road 11Storm NetworkA73200 |  | Zone 2 - Road 11 - Storm Network - Gully outfalls - Backfilling | 2d | 2026-11-15 | 2026-11-16 | RSZone 2Road 11Storm NetworkA73190 |  |  |  | 118.4d | 104d | Contract Price Original Scope [3348.76 SAR]; Excavator Operator [20 h]; Compactor Operator [20 h]; Dump Truck Operator [20 h]; Water Truck Operator [20 h]; Labour [28.59 h]; Gully outfalls [10] | 3,348.76 |  | RD11 |
|  | 5 | **Catch Basins** |  | 2026-01-28 | 2026-11-16 |  |  |  |  |  |  |  |  |  |  |
| RSZone 2Road 11Storm NetworkA73360 |  | Zone 2 - Road 11 - Storm Network - Catch Basins - Excavation | 6d | 2026-01-28 A | 2026-02-03 A | RSZone 2Road 11Storm NetworkA73170 | 100% |  |  |  |  | Contract Price Original Scope [13774.9 SAR]; Excavator Operator [30 h]; Dump Truck Operator [30 h]; Labour [117.6 h]; Catch Basins [4] | 13,774.94 | 13,774.94 | RD11 |
| RSZone 2Road 11Storm NetworkA73370 |  | Zone 2 - Road 11 - Storm Network - Catch Basins - Installation | 1.9d | 2026-02-04 A | 2026-02-05 A | RSZone 2Road 11Storm NetworkA73360 | 100% |  |  |  |  | Contract Price Original Scope [55099.8 SAR]; Crane Operator [7 h]; Boom Truck Operator [7 h]; Equipment Operator [7 h]; Labour [470.41 h]; Catch Basins [4] | 55,099.77 | 55,099.77 | RD11 |
| RSZone 2Road 11Storm NetworkA73380 |  | Zone 2 - Road 11 - Storm Network - Catch Basins - D.I | 3d | 2026-11-09 | 2026-11-11 | RSZone 2Road 11Storm NetworkA73370 |  |  |  | 118.4d | 0d | Contract Price Original Scope [9183.29 SAR]; Crane Operator [7 h]; Boom Truck Operator [7 h]; Equipment Operator [7 h]; Labour [78.4 h]; Catch Basins [4] | 9,183.29 |  | RD11 |
| RSZone 2Road 11Storm NetworkA73390 |  | Zone 2 - Road 11 - Storm Network - Catch Basins - Inner Isolation | 2d | 2026-11-12 | 2026-11-14 | RSZone 2Road 11Storm NetworkA73380 |  |  |  | 118.4d | 0d | Contract Price Original Scope [9183.29 SAR]; Equipment Operator [20 h]; Labour [78.4 h]; Catch Basins [4] | 9,183.29 |  | RD11 |
| RSZone 2Road 11Storm NetworkA73400 |  | Zone 2 - Road 11 - Storm Network - Catch Basins - Backfilling | 2d | 2026-11-15 | 2026-11-16 | RSZone 2Road 11Storm NetworkA73390 |  |  |  | 118.4d | 104d | Contract Price Original Scope [4591.65 SAR]; Excavator Operator [20 h]; Compactor Operator [20 h]; Dump Truck Operator [20 h]; Water Truck Operator [20 h]; Labour [39.2 h]; Catch Basins [4] | 4,591.65 |  | RD11 |

| ID | WBS | Activity | Duration | Start | Finish | Predecessors | Complete | Planned start | Planned finish | Total float | Free float | Resources | Cost | Actual cost | MODON |
| --- | --- | --- | --- | --- | --- | --- | --- | --- | --- | --- | --- | --- | --- | --- | --- |
|  | 9 | **Inspection Chamber** |  | 2026-07-30 | 2026-11-19 |  |  |  |  |  |  |  |  |  |  |
| RSZone 2Road 11Storm NetworkA74710-old |  | Zone 2 - Road 11 - Storm Network - Inspection Chamber - Excavation (old) | 80d | 2026-07-30 A | 2026-11-01 A | RSZone 2Road 11Storm NetworkA73600-old | 100% | 2026-07-30 | 2026-11-02 |  |  | Contract Price Original Scope [107796 SAR]; Excavator Operator [28.89 h]; Dump Truck Operator [28.89 h]; Labour [920.3 h]; Inspection Chamber [26] | 107,795.72 | 107,795.72 | RD11 |
| RSZone 2Road 11Storm NetworkA74720-old |  | Zone 2 - Road 11 - Storm Network - Inspection Chamber - IC Installation (old) | 77d | 2026-08-03 A | 2026-11-01 A | RSZone 2Road 11Storm NetworkA74710-old | 100% |  |  |  |  | Contract Price Original Scope [431146 SAR]; Crane Operator [38.52 h]; Boom Truck Operator [38.52 h]; Equipment Operator [38.52 h]; Labour [3680.9 h]; Inspection Chamber [26] | 431,145.57 | 431,145.57 | RD11 |
| RSZone 2Road 11Storm NetworkA74710 |  | Zone 2 - Road 11 - Storm Network - Inspection Chamber - Excavation | 1d | 2026-11-04 A | 2026-11-08 A | RSZone 2Road 11Storm NetworkA74710-old, RSZone 2Road 11Storm NetworkA73600-old | 100% | 2026-11-08 | 2026-11-08 |  |  | Contract Price Original Scope [4141.68 SAR]; Excavator Operator [1.11 h]; Dump Truck Operator [1.11 h]; Labour [35.36 h]; Inspection Chamber [1] | 4,141.68 | 4,141.68 | RD11 |
| RSZone 2Road 11Storm NetworkA74720 |  | Zone 2 - Road 11 - Storm Network - Inspection Chamber - IC Installation | 1d | 2026-11-04 A | 2026-11-08 A | RSZone 2Road 11Storm NetworkA74720-old, RSZone 2Road 11Storm NetworkA74710 | 100% | 2026-11-09 | 2026-11-09 |  |  | Contract Price Original Scope [16604 SAR]; Crane Operator [1.48 h]; Boom Truck Operator [1.48 h]; Equipment Operator [1.48 h]; Labour [141.76 h]; Inspection Chamber [1] | 16,604.05 | 16,604.05 | RD11 |
| RSZone 2Road 11Storm NetworkA74740 |  | Zone 2 - Road 11 - Storm Network - Inspection Chamber - Inner Isolation | 2d | 2026-11-09 | 2026-11-10 | RSZone 2Road 11Storm NetworkA74720 |  |  |  | 118.4d | 3d | Contract Price Original Scope [74624.9 SAR]; Equipment Operator [20 h]; Labour [637.11 h]; Inspection Chamber [27] | 74,624.94 |  | RD11 |
| RSZone 2Road 11Storm NetworkA74730 |  | Zone 2 - Road 11 - Storm Network - Inspection Chamber - D.I | 3d | 2026-11-15 | 2026-11-17 | RSZone 2Road 11Storm NetworkA74740, RSZone 2Road 11Storm NetworkA73600, RSZone 2Road 11Storm NetworkA74710 |  |  |  | 115.4d | 0d | Contract Price Original Scope [74624.9 SAR]; Crane Operator [7 h]; Boom Truck Operator [7 h]; Equipment Operator [7 h]; Labour [637.11 h]; Inspection Chamber [27] | 74,624.94 |  | RD11 |
| RSZone 2Road 11Storm NetworkA74750 |  | Zone 2 - Road 11 - Storm Network - Inspection Chamber - Backfilling | 2d | 2026-11-18 | 2026-11-19 | RSZone 2Road 11Storm NetworkA74730 |  |  |  | 115.4d | 101d | Contract Price Original Scope [37312.5 SAR]; Excavator Operator [20 h]; Compactor Operator [20 h]; Dump Truck Operator [20 h]; Water Truck Operator [20 h]; Labour [318.55 h]; Inspection Chamber [27] | 37,312.47 |  | RD11 |
|  | 3 | **Collection Chamber** |  | 2026-03-29 | 2026-11-14 |  |  |  |  |  |  |  |  |  |  |
| RSZone 2Road 11Storm NetworkA73610 |  | Zone 2 - Road 11 - Storm Network - Collection Chamber - Excavation | 4d | 2026-03-29 A | 2026-04-01 A | RSZone 2Road 11Storm NetworkA73370 | 100% |  |  |  |  | Contract Price Original Scope [38754.1 SAR]; Excavator Operator [30 h]; Dump Truck Operator [30 h]; Labour [330.86 h]; Collection Chamber [50] | 38,754.12 | 38,754.12 | RD11 |
| RSZone 2Road 11Storm NetworkA73620 |  | Zone 2 - Road 11 - Storm Network - Collection Chamber - Installation | 4d | 2026-04-02 A | 2026-04-06 A | RSZone 2Road 11Storm NetworkA73610 | 100% | 2026-04-02 | 2026-04-07 |  |  | Contract Price Original Scope [155016 SAR]; Crane Operator [7 h]; Boom Truck Operator [7 h]; Equipment Operator [7 h]; Labour [1323.45 h]; Collection Chamber [50] | 155,016.47 | 155,016.47 | RD11 |
| RSZone 2Road 11Storm NetworkA73650 |  | Zone 2 - Road 11 - Storm Network - Collection Chamber - Backfilling | 5d | 2026-04-08 A | 2026-04-13 A | RSZone 2Road 11Storm NetworkA73620 | 100% |  |  |  |  | Contract Price Original Scope [12918 SAR]; Excavator Operator [20 h]; Compactor Operator [20 h]; Dump Truck Operator [20 h]; Water Truck Operator [20 h]; Labour [110.29 h]; Collection Chamber [50] | 12,918.04 | 12,918.04 | RD11 |
| RSZone 2Road 11Storm NetworkA73630-old |  | Zone 2 - Road 11 - Storm Network - Collection Chamber - D.I (old) | 82d | 2026-07-28 A | 2026-11-01 A | RSZone 2Road 11Storm NetworkA73650, RSZone 2Road 11Storm NetworkA74720-old | 100% |  |  |  |  | Contract Price Original Scope [4650.49 SAR]; Crane Operator [1.26 h]; Boom Truck Operator [1.26 h]; Equipment Operator [1.26 h]; Labour [39.7 h]; Collection Chamber [9] | 4,650.49 | 4,650.49 | RD11 |
| RSZone 2Road 11Storm NetworkA73630 |  | Zone 2 - Road 11 - Storm Network - Collection Chamber - D.I | 2.46d | 2026-11-09 | 2026-11-11 | RSZone 2Road 11Storm NetworkA73630-old, RSZone 2Road 11Storm NetworkA74720 |  |  |  | 109.88d | 0d | Contract Price Original Scope [21185.6 SAR]; Crane Operator [5.74 h]; Boom Truck Operator [5.74 h]; Equipment Operator [5.74 h]; Labour [180.87 h]; Collection Chamber [41] | 21,185.58 |  | RD11 |
| RSZone 2Road 11Storm NetworkA73640 |  | Zone 2 - Road 11 - Storm Network - Collection Chamber - Inner Isolation | 2d | 2026-11-11 | 2026-11-14 | RSZone 2Road 11Storm NetworkA73630 |  |  |  | 120.94d | 106.54d | Contract Price Original Scope [25836.1 SAR]; Equipment Operator [20 h]; Labour [220.58 h]; Collection Chamber [50] | 25,836.08 |  | RD11 |
|  | 6 | **Gravel and Geotextile** |  | 2026-02-08 | 2026-02-09 |  |  |  |  |  |  |  |  |  |  |
| RSZone 2Road 11Storm NetworkA74370 |  | Zone 2 - Road 11 - Storm Network - Gravel and Geotextile - Installation | 2d | 2026-02-08 A | 2026-02-09 A | RSZone 2Road 11Storm NetworkA73650 | 100% |  |  |  |  | Contract Price Original Scope [236004 SAR]; Excavator Operator [7 h]; Dump Truck Operator [7 h]; Equipment Operator [7 h]; Water Truck Operator [7 h]; Labour [2014.88 h]; Gravel and Geotextile [2012] | 236,004.11 | 236,004.11 | RD11 |
|  | 2 | **Sewage Network** |  | 2026-01-11 | 2026-02-01 |  |  |  |  |  |  |  |  |  |  |
|  | 1 | **UPVC Pipes 150 MM** |  | 2026-01-11 | 2026-02-01 |  |  |  |  |  |  |  |  |  |  |
| RSZone 2Road 11Sewage NetworkA72150 |  | Zone 2 - Road 11 - Sewage Network - UPVC Pipes 150 MM - Excavation | 4.9d | 2026-01-11 A | 2026-01-15 A | RSZone 2Road 10Sewage NetworkA91560 | 100% |  |  |  |  | Contract Price Original Scope [156.11 SAR]; Excavator Operator [30 h]; Dump Truck Operator [30 h]; Labour [1.33 h]; UPVC Pipes 150 MM [5] | 156.11 | 156.11 | RD11 |
| RSZone 2Road 11Sewage NetworkA72160 |  | Zone 2 - Road 11 - Sewage Network - UPVC Pipes 150 MM - Pipe Installation | 7d | 2026-01-18 A | 2026-01-25 A | RSZone 2Road 11Sewage NetworkA72150 | 100% |  |  |  |  | Contract Price Original Scope [676.5 SAR]; Excavator Operator [40 h]; Crane Operator [40 h]; Equipment Operator [40 h]; Labour [5.78 h]; UPVC Pipes 150 MM [5] | 676.5 | 676.5 | RD11 |
| RSZone 2Road 11Sewage NetworkA72170 |  | Zone 2 - Road 11 - Sewage Network - UPVC Pipes 150 MM - Test | 2d | 2026-01-26 A | 2026-01-27 A | RSZone 2Road 11Sewage NetworkA72160 | 100% |  |  |  |  | Contract Price Original Scope [104.08 SAR]; Pump Operator [20 h]; Equipment Operator [20 h]; Labour [0.89 h]; UPVC Pipes 150 MM [5] | 104.08 | 104.08 | RD11 |
| RSZone 2Road 11Sewage NetworkA72180 |  | Zone 2 - Road 11 - Sewage Network - UPVC Pipes 150 MM - Backfilling | 4d | 2026-01-28 A | 2026-02-01 A | RSZone 2Road 11Sewage NetworkA72170 | 100% |  |  |  |  | Contract Price Original Scope [104.08 SAR]; Excavator Operator [20 h]; Compactor Operator [20 h]; Dump Truck Operator [20 h]; Water Truck Operator [20 h]; Labour [0.89 h]; UPVC Pipes 150 MM [5] | 104.08 | 104.08 | RD11 |
|  | 22 | **Potable Water Network** |  | 2026-02-16 | 2026-11-24 |  |  |  |  |  |  |  |  |  |  |
|  | 3 | **Elbows** |  | 2026-02-16 | 2026-02-17 |  |  |  |  |  |  |  |  |  |  |
| RSZone 2Road 11Potable NetworkA75640 |  | Zone 2 - Road 11 - Potable Water Network - Elbows - Installation | 2d | 2026-02-16 A | 2026-02-17 A | RSZone 2Road 10Potable NetworkA77090 | 100% |  |  |  |  | Contract Price Original Scope [5628.73 SAR]; Labour [48.06 h]; Fittings - Elbows (all sizes) [3] | 5,628.73 | 5,628.73 | RD11 |

| ID | WBS | Activity | Duration | Start | Finish | Predecessors | Complete | Remaining | Planned start | Planned finish | Total float | Free float | Resources | Cost | Actual cost | MODON |
| --- | --- | --- | --- | --- | --- | --- | --- | --- | --- | --- | --- | --- | --- | --- | --- | --- |
|  | 1 | **End Cap** |  | 2026-02-24 | 2026-02-25 |  |  |  |  |  |  |  |  |  |  |  |
| RSZone 2Road 11Potable NetworkA75710 |  | Zone 2 - Road 11 - Potable Water Network - End Cap - Installation | 2d | 2026-02-24 A | 2026-02-25 A | RSZone 2Road 11Potable NetworkA75640 | 100% |  |  |  |  |  | Contract Price Original Scope [1461.95 SAR]; Labour [12.48 h]; Fittings - End Caps (all sizes) [2] | 1,461.95 | 1,461.95 | RD11 |
|  | 7 | **Buried Valves** |  | 2026-08-09 | 2026-11-17 |  |  |  |  |  |  |  |  |  |  |  |
| RSZone 2Road 11Potable NetworkA76040-old |  | Zone 2 - Road 11 - Potable Water Network - Buried Valves - Excavation (old) | 72d | 2026-08-09 A | 2026-11-01 A | RSZone 2Road 11Potable NetworkA75710 | 100% |  |  |  |  |  | Contract Price Original Scope [800.95 SAR]; Excavator Operator [16.67 h]; Dump Truck Operator [16.67 h]; Labour [6.84 h]; Buried Valves [5] | 800.95 | 800.95 | RD11 |
| RSZone 2Road 11Potable NetworkA76050-old |  | Zone 2 - Road 11 - Potable Water Network - Buried Valves - Installation (old) | 70d | 2026-08-11 A | 2026-11-01 A | RSZone 2Road 11Potable NetworkA76040-old | 100% |  |  |  |  |  | Contract Price Original Scope [10412.3 SAR]; Labour [88.9 h]; Buried Valves [5] | 10,412.33 | 10,412.33 | RD11 |
| RSZone 2Road 11Potable NetworkA76040 |  | Zone 2 - Road 11 - Potable Water Network - Buried Valves - Excavation | 1.33d | 2026-11-03 A | 2026-11-09 | RSZone 2Road 11Potable NetworkA76040-old | 67% | 0.45d | 2026-11-02 | 2026-11-03 | 93.95d | 0d | Contract Price Original Scope [640.76 SAR]; Excavator Operator [13.33 h]; Dump Truck Operator [13.33 h]; Labour [5.47 h]; Buried Valves [4] | 640.76 | 426.91 | RD11 |
| RSZone 2Road 11Potable NetworkA76050 |  | Zone 2 - Road 11 - Potable Water Network - Buried Valves - Installation | 1.33d | 2026-11-03 A | 2026-11-09 | RSZone 2Road 11Potable NetworkA76050-old, RSZone 2Road 11Potable NetworkA76040 SS | 67% | 0.45d | 2026-11-03 | 2026-11-04 | 93.95d | 0d | Contract Price Original Scope [8329.87 SAR]; Labour [71.12 h]; Buried Valves [4] | 8,329.87 | 5,549.77 | RD11 |
| RSZone 2Road 11Potable NetworkA76060 |  | Zone 2 - Road 11 - Potable Water Network - Buried Valves - Surface Box | 3d | 2026-11-09 | 2026-11-12 | RSZone 2Road 11Potable NetworkA76050, RSZone 2Road 11Potable NetworkA76040 |  |  |  |  | 93.95d | 0d | Labour; Buried Valves [9] |  |  | RD11 |
| RSZone 2Road 11Potable NetworkA76070 |  | Zone 2 - Road 11 - Potable Water Network - Buried Valves - Test | 2d | 2026-11-12 | 2026-11-15 | RSZone 2Road 11Potable NetworkA76060 |  |  |  |  | 93.95d | 0d | Contract Price Original Scope [5766.83 SAR]; Pump Operator [20 h]; Equipment Operator [20 h]; Labour [49.23 h]; Buried Valves [9] | 5,766.83 |  | RD11 |
| RSZone 2Road 11Potable NetworkA76080 |  | Zone 2 - Road 11 - Potable Water Network - Buried Valves - Backfilling | 2d | 2026-11-15 | 2026-11-17 | RSZone 2Road 11Potable NetworkA76070 |  |  |  |  | 93.95d | 93.75d | Contract Price Original Scope [2883.42 SAR]; Excavator Operator [20 h]; Compactor Operator [20 h]; Dump Truck Operator [20 h]; Water Truck Operator [20 h]; Labour [24.62 h]; Buried Valves [9] | 2,883.42 |  | RD11 |
|  | 8 | **Isolation Valve Chambers** |  | 2026-03-08 | 2026-11-24 |  |  |  |  |  |  |  |  |  |  |  |
| RSZone 2Road 11Potable NetworkA76740 |  | Zone 2 - Road 11 - Potable Water Network - Isolation Valve Chambers - Excavation | 4d | 2026-03-08 A | 2026-03-11 A | RSZone 2Road 11Potable NetworkA75710 | 100% |  |  |  |  |  | Contract Price Original Scope [8566.56 SAR]; Labour [73.14 h]; Isolation Valve Chambers [6] | 8,566.56 | 8,566.56 | RD11 |
| RSZone 2Road 11Potable NetworkA76750 |  | Zone 2 - Road 11 - Potable Water Network - Isolation Valve Chambers - Footings | 5d | 2026-03-12 A | 2026-03-17 A | RSZone 2Road 11Potable NetworkA76740 | 100% |  | 2026-03-12 | 2026-03-18 |  |  | Contract Price Original Scope [25699.7 SAR]; Labour [219.41 h]; Isolation Valve Chambers [6] | 25,699.67 | 25,699.67 | RD11 |
| RSZone 2Road 11Potable NetworkA76760 |  | Zone 2 - Road 11 - Potable Water Network - Isolation Valve Chambers - Walls | 5d | 2026-03-18 A | 2026-03-23 A | RSZone 2Road 11Potable NetworkA76750 | 100% |  |  |  |  |  | Contract Price Original Scope [34266.2 SAR]; Labour [292.55 h]; Isolation Valve Chambers [6] | 34,266.23 | 34,266.23 | RD11 |
| RSZone 2Road 11Potable NetworkA76770 |  | Zone 2 - Road 11 - Potable Water Network - Isolation Valve Chambers - Slab | 3d | 2026-11-09 | 2026-11-11 | RSZone 2Road 11Potable NetworkA76760 |  |  |  |  | 87.6d | 0d | Contract Price Original Scope [309824 SAR]; Labour [2645.12 h]; Isolation Valve Chambers [31] | 309,823.86 |  | RD11 |
| RSZone 2Road 11Potable NetworkA76780 |  | Zone 2 - Road 11 - Potable Water Network - Isolation Valve Chambers - D.I Cover | 3d | 2026-11-12 | 2026-11-15 | RSZone 2Road 11Potable NetworkA76770 |  |  |  |  | 87.6d | 0d | Contract Price Original Scope [171331 SAR]; Labour [1462.74 h]; Isolation Valve Chambers [60] | 171,331.17 |  | RD11 |
| RSZone 2Road 11Potable NetworkA76790 |  | Zone 2 - Road 11 - Potable Water Network - Isolation Valve Chambers - Internal Isolation | 3d | 2026-11-16 | 2026-11-18 | RSZone 2Road 11Potable NetworkA76780 |  |  |  |  | 87.6d | 0d | Contract Price Original Scope [85665.6 SAR]; Labour [731.37 h]; Isolation Valve Chambers [60] | 85,665.58 |  | RD11 |
| RSZone 2Road 11Potable NetworkA76800 |  | Zone 2 - Road 11 - Potable Water Network - Isolation Valve Chambers - External Isolation | 2.8d | 2026-11-19 | 2026-11-22 | RSZone 2Road 11Potable NetworkA76790 |  |  |  |  | 87.6d | 0d | Labour; Isolation Valve Chambers |  |  | RD11 |
| RSZone 2Road 11Potable NetworkA76810 |  | Zone 2 - Road 11 - Potable Water Network - Isolation Valve Chambers - Backfilling | 2d | 2026-11-22 | 2026-11-24 | RSZone 2Road 11Potable NetworkA76800 |  |  |  |  | 87.6d | 87.4d | Contract Price Original Scope [44260.6 SAR]; Excavator Operator [20 h]; Compactor Operator [20 h]; Dump Truck Operator [20 h]; Water Truck Operator [20 h]; Labour [377.87 h]; Isolation Valve Chambers [31] | 44,260.55 |  | RD11 |
|  | 4 | **Thurst Blocks** |  | 2026-08-03 | 2026-11-09 |  |  |  |  |  |  |  |  |  |  |  |
| RSZone 2Road 11Potable NetworkA75780-old |  | Zone 2 - Road 11 - Potable Water Network - Thurst Blocks - Thrust Block (old) | 77d | 2026-08-03 A | 2026-11-01 A | RSZone 2Road 11Potable NetworkA76760 | 100% |  |  |  |  |  | Contract Price Original Scope [26982 SAR]; Crane Operator [14.77 h]; Pump Operator [14.77 h]; Equipment Operator [14.77 h]; Labour [230.36 h]; Thrust Blocks [8] | 26,982.04 | 26,982.04 | RD11 |
| RSZone 2Road 11Potable NetworkA75780 |  | Zone 2 - Road 11 - Potable Water Network - Thurst Blocks - Thrust Block | 1d | 2026-11-09 | 2026-11-09 | RSZone 2Road 11Potable NetworkA75780-old |  |  |  |  | 100.4d | 100.2d | Contract Price Original Scope [16871.4 SAR]; Crane Operator [9.23 h]; Pump Operator [9.23 h]; Equipment Operator [9.23 h]; Labour [144.04 h]; Thrust Blocks [5] | 16,871.39 |  | RD11 |
|  | 9 | **FIRE HYDRANT** |  | 2026-08-17 | 2026-11-19 |  |  |  |  |  |  |  |  |  |  |  |
| RSZone 2Road 11Potable NetworkA77320-old |  | Zone 2 - Road 11 - Potable Water Network - FIRE HYDRANT - Excavation (old) | 65d | 2026-08-17 A | 2026-11-01 A | RSZone 2Road 11Potable NetworkA76760 | 100% |  |  |  |  |  | Contract Price Original Scope [9710.97 SAR]; Excavator Operator [26.25 h]; Dump Truck Operator [26.25 h]; Labour [82.91 h]; Fire Hydrant [7] | 9,710.97 | 9,710.97 | RD11 |
| RSZone 2Road 11Potable NetworkA77330-old |  | Zone 2 - Road 11 - Potable Water Network - FIRE HYDRANT - Buried Gate Valve Installation (old) | 64d | 2026-08-18 A | 2026-11-01 A | RSZone 2Road 11Potable NetworkA77320-old | 100% |  |  |  |  |  | Labour; Fire Hydrant [7] |  |  | RD11 |
| RSZone 2Road 11Potable NetworkA77340-old |  | Zone 2 - Road 11 - Potable Water Network - FIRE HYDRANT - Fire Hydrant Installation (old) | 63d | 2026-08-19 A | 2026-11-01 A | RSZone 2Road 11Potable NetworkA77330-old | 100% |  |  |  |  |  | Contract Price Original Scope [70890.1 SAR]; Labour [605.22 h]; Fire Hydrant [7] | 70,890.11 | 70,890.11 | RD11 |
| RSZone 2Road 11Potable NetworkA77320 |  | Zone 2 - Road 11 - Potable Water Network - FIRE HYDRANT - Excavation | 1d | 2026-11-09 | 2026-11-09 | RSZone 2Road 11Potable NetworkA77320-old |  |  |  |  | 91.4d | 0d | Contract Price Original Scope [1387.28 SAR]; Excavator Operator [3.75 h]; Dump Truck Operator [3.75 h]; Labour [11.84 h]; Fire Hydrant [1] | 1,387.28 |  | RD11 |
| RSZone 2Road 11Potable NetworkA77330 |  | Zone 2 - Road 11 - Potable Water Network - FIRE HYDRANT - Buried Gate Valve Installation | 1d | 2026-11-10 | 2026-11-10 | RSZone 2Road 11Potable NetworkA77330-old, RSZone 2Road 11Potable NetworkA77320 |  |  |  |  | 91.4d | 0d | Labour; Fire Hydrant [1] |  |  | RD11 |
| RSZone 2Road 11Potable NetworkA77340 |  | Zone 2 - Road 11 - Potable Water Network - FIRE HYDRANT - Fire Hydrant Installation | 1d | 2026-11-11 | 2026-11-11 | RSZone 2Road 11Potable NetworkA77340-old, RSZone 2Road 11Potable NetworkA77330 |  |  |  |  | 91.4d | 0d | Contract Price Original Scope [10127.2 SAR]; Labour [86.46 h]; Fire Hydrant [1] | 10,127.16 |  | RD11 |
| RSZone 2Road 11Potable NetworkA77350 |  | Zone 2 - Road 11 - Potable Water Network - FIRE HYDRANT - Surface Box | 3d | 2026-11-12 | 2026-11-15 | RSZone 2Road 11Potable NetworkA77340, RSZone 2Road 11Potable NetworkA77320, RSZone 2Road 11Potable NetworkA77330 |  |  |  |  | 91.4d | 0d | Labour; Fire Hydrant [8] |  |  | RD11 |
| RSZone 2Road 11Potable NetworkA77360 |  | Zone 2 - Road 11 - Potable Water Network - FIRE HYDRANT - Test | 2d | 2026-11-16 | 2026-11-17 | RSZone 2Road 11Potable NetworkA77350 |  |  |  |  | 91.4d | 0d | Contract Price Original Scope [7768.78 SAR]; Pump Operator [20 h]; Equipment Operator [20 h]; Labour [66.33 h]; Fire Hydrant [8] | 7,768.78 |  | RD11 |
| RSZone 2Road 11Potable NetworkA77370 |  | Zone 2 - Road 11 - Potable Water Network - FIRE HYDRANT - Backfilling | 2d | 2026-11-18 | 2026-11-19 | RSZone 2Road 11Potable NetworkA77360 |  |  |  |  | 91.4d | 91.2d | Contract Price Original Scope [11098.3 SAR]; Excavator Operator [20 h]; Compactor Operator [20 h]; Dump Truck Operator [20 h]; Water Truck Operator [20 h]; Labour [94.75 h]; Fire Hydrant [8] | 11,098.26 |  | RD11 |

| ID | WBS | Activity | Duration | Start | Finish | Predecessors | Complete | Planned start | Planned finish | Total float | Free float | Resources | Cost | Actual cost | MODON |
| --- | --- | --- | --- | --- | --- | --- | --- | --- | --- | --- | --- | --- | --- | --- | --- |
|  | 5 | **Lateral Irrigation Network** |  | 2026-08-13 | 2026-11-16 |  |  |  |  |  |  |  |  |  |  |
|  | 6 | **HDPE Pipes** |  | 2026-08-13 | 2026-11-12 |  |  |  |  |  |  |  |  |  |  |
|  | 2 | **HDPE Pipes 125 MM** |  | 2026-08-13 | 2026-11-12 |  |  |  |  |  |  |  |  |  |  |
| RSZone 2Road 11Irrigation NetworkA91780 |  | Zone 2 - Road 11 - Lateral Irrigation Network - HDPE Pipes 125 MM - Excavation | 6d | 2026-08-13 A | 2026-08-19 A | RSZone 2Road 08Irrigation NetworkA90980 | 100% | 2026-08-13 | 2026-08-20 |  |  | Contract Price Original Scope [1901.75 SAR]; Excavator Operator [30 h]; Dump Truck Operator [30 h]; Labour [16.24 h]; HDPE Pipes 125 MM [137] | 1,901.75 | 1,901.75 | RD11 |
| RSZone 2Road 11Irrigation NetworkA91790 |  | Zone 2 - Road 11 - Lateral Irrigation Network - HDPE Pipes 125 MM - Pipe Installation | 6.9d | 2026-08-20 A | 2026-08-27 A | RSZone 2Road 11Irrigation NetworkA91780 | 100% |  |  |  |  | Contract Price Original Scope [13312.2 SAR]; Excavator Operator [40 h]; Crane Operator [40 h]; Equipment Operator [40 h]; Labour [113.65 h]; HDPE Pipes 125 MM [137] | 13,312.25 | 13,312.25 | RD11 |
| RSZone 2Road 11Irrigation NetworkA91800 |  | Zone 2 - Road 11 - Lateral Irrigation Network - HDPE Pipes 125 MM - Test | 2d | 2026-11-09 | 2026-11-10 | RSZone 2Road 11Irrigation NetworkA91790 |  |  |  | 97.4d | 0d | Contract Price Original Scope [1901.75 SAR]; Pump Operator [20 h]; Equipment Operator [20 h]; Labour [16.24 h]; HDPE Pipes 125 MM [137] | 1,901.75 |  | RD11 |
| RSZone 2Road 11Irrigation NetworkA91810 |  | Zone 2 - Road 11 - Lateral Irrigation Network - HDPE Pipes 125 MM - Backfilling | 2d | 2026-11-11 | 2026-11-12 | RSZone 2Road 11Irrigation NetworkA91800 |  |  |  | 97.4d | 96.76d | Contract Price Original Scope [1901.75 SAR]; Excavator Operator [20 h]; Compactor Operator [20 h]; Dump Truck Operator [20 h]; Water Truck Operator [20 h]; Labour [16.24 h]; HDPE Pipes 125 MM [137] | 1,901.75 |  | RD11 |
|  | 1 | **HDPE Pipes 160 MM** |  | 2026-08-16 | 2026-11-12 |  |  |  |  |  |  |  |  |  |  |
| RSZone 2Road 11Irrigation NetworkA92260 |  | Zone 2 - Road 11 - Lateral Irrigation Network - HDPE Pipes 160 MM - Excavation | 3d | 2026-08-16 A | 2026-08-18 A | RSZone 2Road 11Irrigation NetworkA91790 | 100% |  |  |  |  | Contract Price Original Scope [3149.84 SAR]; Excavator Operator [30 h]; Dump Truck Operator [30 h]; Labour [26.89 h]; HDPE Pipes 160 MM [213] | 3,149.84 | 3,149.84 | RD11 |
| RSZone 2Road 11Irrigation NetworkA92270 |  | Zone 2 - Road 11 - Lateral Irrigation Network - HDPE Pipes 160 MM - Pipe Installation | 7d | 2026-08-19 A | 2026-08-26 A | RSZone 2Road 11Irrigation NetworkA92260 | 100% |  |  |  |  | Contract Price Original Scope [22048.9 SAR]; Excavator Operator [40 h]; Crane Operator [40 h]; Equipment Operator [40 h]; Labour [188.24 h]; HDPE Pipes 160 MM [213] | 22,048.91 | 22,048.91 | RD11 |
| RSZone 2Road 11Irrigation NetworkA92280 |  | Zone 2 - Road 11 - Lateral Irrigation Network - HDPE Pipes 160 MM - Test | 2d | 2026-11-09 | 2026-11-10 | RSZone 2Road 11Irrigation NetworkA92270 |  |  |  | 97.4d | 0d | Contract Price Original Scope [3149.84 SAR]; Pump Operator [20 h]; Equipment Operator [20 h]; Labour [26.89 h]; HDPE Pipes 160 MM [213] | 3,149.84 |  | RD11 |
| RSZone 2Road 11Irrigation NetworkA92290 |  | Zone 2 - Road 11 - Lateral Irrigation Network - HDPE Pipes 160 MM - Backfilling | 2d | 2026-11-11 | 2026-11-12 | RSZone 2Road 11Irrigation NetworkA92280 |  |  |  | 97.4d | 96.76d | Contract Price Original Scope [3149.84 SAR]; Excavator Operator [20 h]; Compactor Operator [20 h]; Dump Truck Operator [20 h]; Water Truck Operator [20 h]; Labour [26.89 h]; HDPE Pipes 160 MM [213] | 3,149.84 |  | RD11 |
|  | 1 | **HDPE Fitting** |  | 2026-08-16 | 2026-11-12 |  |  |  |  |  |  |  |  |  |  |
|  | 1 | **Elbows** |  | 2026-10-12 | 2026-11-09 |  |  |  |  |  |  |  |  |  |  |
|  | 2 | **Elbows for Pipe 160 MM** |  | 2026-10-12 | 2026-11-09 |  |  |  |  |  |  |  |  |  |  |
| RSZone 2Road 11Irrigation NetworkA91710- |  | Zone 2 - Road 11 - Lateral Irrigation Network - Elbows for Pipe 160 MM - Installation (old) | 18d | 2026-10-12 A | 2026-11-01 A | RSZone 2Road 11Irrigation NetworkA92270 | 100% |  |  |  |  | Contract Price Original Scope [2598.92 SAR]; Labour [22.19 h]; Fittings - Elbows (all sizes) [2] | 2,598.92 | 2,598.92 | RD11 |
| RSZone 2Road 11Irrigation NetworkA91710- |  | Zone 2 - Road 11 - Lateral Irrigation Network - Elbows for Pipe 160 MM - Installation (old) | 1d | 2026-11-09 | 2026-11-09 | RSZone 2Road 11Irrigation NetworkA91710- |  |  |  | 100.4d | 99.76d | Contract Price Original Scope [1299.46 SAR]; Labour [11.09 h]; Fittings - Elbows (all sizes) [1] | 1,299.46 |  | RD11 |
|  | 2 | **Tees** |  | 2026-08-16 | 2026-11-12 |  |  |  |  |  |  |  |  |  |  |
|  | 1 | **Tees for Pipe 125 MM** |  | 2026-08-16 | 2026-08-17 |  |  |  |  |  |  |  |  |  |  |
| RSZone 2Road 11Irrigation NetworkA92350 |  | Zone 2 - Road 11 - Lateral Irrigation Network - Tees for Pipe 125 MM - Installation | 2d | 2026-08-16 A | 2026-08-17 A | RSZone 2Road 11Irrigation NetworkA92270 | 100% |  |  |  |  | Contract Price Original Scope [3072.12 SAR]; Labour [26.23 h]; Fittings - Tees (all sizes) [2] | 3,072.12 | 3,072.12 | RD11 |
|  | 2 | **Tees for Pipe 160 MM** |  | 2026-10-15 | 2026-11-09 |  |  |  |  |  |  |  |  |  |  |
| RSZone 2Road 11Irrigation NetworkA91730- |  | Zone 2 - Road 11 - Lateral Irrigation Network - Tees for Pipe 160 MM - Installation (old) | 15d | 2026-10-15 A | 2026-11-01 A | RSZone 2Road 11Irrigation NetworkA92350 | 100% | 2026-10-15 | 2026-11-02 |  |  | Contract Price Original Scope [16896.7 SAR]; Labour [144.25 h]; Fittings - Tees (all sizes) [11] | 16,896.66 | 16,896.66 | RD11 |
| RSZone 2Road 11Irrigation NetworkA91730- |  | Zone 2 - Road 11 - Lateral Irrigation Network - Tees for Pipe 160 MM - Installation (old) | 1d | 2026-11-09 | 2026-11-09 | RSZone 2Road 11Irrigation NetworkA91730- |  |  |  | 97.4d | 0d | Contract Price Original Scope [1536.06 SAR]; Labour [13.11 h]; Fittings - Tees (all sizes) [1] | 1,536.06 |  | RD11 |
|  | 5 | **End Cap for Pipe 125 MM** |  | 2026-11-10 | 2026-11-12 |  |  |  |  |  |  |  |  |  |  |
| RSZone 2Road 11Irrigation NetworkA92340 |  | Zone 2 - Road 11 - Lateral Irrigation Network - End Cap for Pipe 125 MM - Installation | 3d | 2026-11-10 | 2026-11-12 | RSZone 2Road 11Irrigation NetworkA91730- |  |  |  | 97.4d | 96.76d | Contract Price Original Scope [3735.9 SAR]; Labour [31.9 h]; Fittings - End Caps (all sizes) [10] | 3,735.9 |  | RD11 |

| ID | WBS | Activity | Duration | Start | Finish | Predecessors | Complete | Total float | Free float | Resources | Cost | Actual cost | MODON |
| --- | --- | --- | --- | --- | --- | --- | --- | --- | --- | --- | --- | --- | --- |
|  | 3 | **Buried Valves** |  | 2026-09-06 | 2026-11-16 |  |  |  |  |  |  |  |  |
| RSZone 2Road 11Irrigation NetworkA95040 |  | Zone 2 - Road 11 - Lateral Irrigation Network - Buried Valves - Excavation | 3d | 2026-09-06 A | 2026-09-08 A | RSZone 2Road 11Irrigation NetworkA92350 | 100% |  |  | Contract Price Original Scope [2690.26 SAR]; Excavator Operator [30 h]; Dump Truck Operator [30 h]; Labour [22.97 h]; Buried Valves [40] | 2,690.26 | 2,690.26 | RD11 |
| RSZone 2Road 11Irrigation NetworkA95050 |  | Zone 2 - Road 11 - Lateral Irrigation Network - Buried Valves - Installation | 1.9d | 2026-09-09 A | 2026-09-10 A | RSZone 2Road 11Irrigation NetworkA95040 | 100% |  |  | Contract Price Original Scope [34973.4 SAR]; Labour [298.59 h]; Buried Valves [40] | 34,973.44 | 34,973.44 | RD11 |
| RSZone 2Road 11Irrigation NetworkA95060 |  | Zone 2 - Road 11 - Lateral Irrigation Network - Buried Valves - Surface Box | 3d | 2026-11-09 | 2026-11-11 | RSZone 2Road 11Irrigation NetworkA95050 |  | 94.4d | 0d | Labour; Buried Valves [40] |  |  | RD11 |
| RSZone 2Road 11Irrigation NetworkA95070 |  | Zone 2 - Road 11 - Lateral Irrigation Network - Buried Valves - Test | 2d | 2026-11-12 | 2026-11-14 | RSZone 2Road 11Irrigation NetworkA95060 |  | 94.4d | 0d | Contract Price Original Scope [10761.1 SAR]; Pump Operator [20 h]; Equipment Operator [20 h]; Labour [91.87 h]; Buried Valves [40] | 10,761.06 |  | RD11 |
| RSZone 2Road 11Irrigation NetworkA95080 |  | Zone 2 - Road 11 - Lateral Irrigation Network - Buried Valves - Backfilling | 2d | 2026-11-15 | 2026-11-16 | RSZone 2Road 11Irrigation NetworkA95070 |  | 94.4d | 93.76d | Contract Price Original Scope [5380.53 SAR]; Excavator Operator [20 h]; Compactor Operator [20 h]; Dump Truck Operator [20 h]; Water Truck Operator [20 h]; Labour [45.94 h]; Buried Valves [40] | 5,380.53 |  | RD11 |
|  | 4 | **Thrust Block** |  | 2026-10-18 | 2026-11-09 |  |  |  |  |  |  |  |  |
| RSZone 2Road 11Irrigation NetworkA92250- |  | Zone 2 - Road 11 - Lateral Irrigation Network - Thrust Block - Thrust Block (old) | 13d | 2026-10-18 A | 2026-11-01 A | RSZone 2Road 11Irrigation NetworkA95050 | 100% |  |  | Contract Price Original Scope [15319.3 SAR]; Crane Operator [10.58 h]; Pump Operator [10.58 h]; Equipment Operator [10.58 h]; Labour [130.79 h]; Thrust Blocks [14.99] | 15,319.3 | 15,319.3 | RD11 |
| RSZone 2Road 11Irrigation NetworkA92250- |  | Zone 2 - Road 11 - Lateral Irrigation Network - Thrust Block - Thrust Block (old) | 1d | 2026-11-09 | 2026-11-09 | RSZone 2Road 11Irrigation NetworkA92250- |  | 100.4d | 99.76d | Contract Price Original Scope [2050.62 SAR]; Crane Operator [1.42 h]; Pump Operator [1.42 h]; Equipment Operator [1.42 h]; Labour [17.51 h]; Thrust Blocks [2.01] | 2,050.62 |  | RD11 |
|  | 3 | **Telecom** |  | 2026-03-24 | 2026-11-29 |  |  |  |  |  |  |  |  |
|  | 1 | **Telecom Pipe** |  | 2026-08-19 | 2026-11-29 |  |  |  |  |  |  |  |  |
| RSZone 2Road 11Telecom NetworkA78200-old |  | Zone 2 - Road 11 - Telecom Network - Telecom Pipe - Excavation (old) | 63d | 2026-08-19 A | 2026-11-01 A | RSZone 2Road 08Telecom NetworkA78010-old | 100% |  |  | Contract Price Original Scope [46218.1 SAR]; Excavator Operator [23.9 h]; Dump Truck Operator [23.9 h]; Labour [394.59 h]; Telecom Pipe [2144.63] | 46,218.13 | 46,218.13 | RD11 |
| RSZone 2Road 11Telecom NetworkA78210-old |  | Zone 2 - Road 11 - Telecom Network - Telecom Pipe - Concrete Pouring (old) | 60d | 2026-08-23 A | 2026-11-01 A | RSZone 2Road 11Telecom NetworkA78200-old | 100% |  |  | Contract Price Original Scope [323430 SAR]; Crane Operator [11.15 h]; Pump Operator [11.15 h]; Equipment Operator [11.15 h]; Labour [2761.28 h]; Telecom Pipe [2143.99] | 323,430.22 | 323,430.22 | RD11 |
| RSZone 2Road 11Telecom NetworkA78230-old |  | Zone 2 - Road 11 - Telecom Network - Telecom Pipe - Backfilling (old) | 58d | 2026-08-25 A | 2026-11-01 A | RSZone 2Road 11Telecom NetworkA78210-old | 100% |  |  | Contract Price Original Scope [24656.1 SAR]; Excavator Operator [8.5 h]; Compactor Operator [8.5 h]; Dump Truck Operator [8.5 h]; Water Truck Operator [8.5 h]; Labour [210.5 h]; Telecom Pipe [1144.1] | 24,656.12 | 24,656.12 | RD11 |
| RSZone 2Road 11Telecom NetworkA78200 |  | Zone 2 - Road 11 - Telecom Network - Telecom Pipe - Excavation | 1d | 2026-11-23 | 2026-11-23 | RSZone 2Road 11Telecom NetworkA78200-old, RSZone 2Road 08Telecom NetworkA78010 |  | 89.25d | 0d | Contract Price Original Scope [11796.3 SAR]; Excavator Operator [6.1 h]; Dump Truck Operator [6.1 h]; Labour [100.71 h]; Telecom Pipe [547.37] | 11,796.26 |  | RD11 |
| RSZone 2Road 11Telecom NetworkA78210 |  | Zone 2 - Road 11 - Telecom Network - Telecom Pipe - Concrete Pouring | 1d | 2026-11-24 | 2026-11-24 | RSZone 2Road 11Telecom NetworkA78210-old, RSZone 2Road 11Telecom NetworkA78200 |  | 89.25d | 0d | Contract Price Original Scope [82670.5 SAR]; Crane Operator [2.85 h]; Pump Operator [2.85 h]; Equipment Operator [2.85 h]; Labour [705.8 h]; Telecom Pipe [548.01] | 82,670.51 |  | RD11 |
| RSZone 2Road 11Telecom NetworkA78230 |  | Zone 2 - Road 11 - Telecom Network - Telecom Pipe - Backfilling | 1.15d | 2026-11-25 | 2026-11-26 | RSZone 2Road 11Telecom NetworkA78230-old, RSZone 2Road 11Telecom NetworkA78210 |  | 89.25d | 0d | Contract Price Original Scope [33358.3 SAR]; Excavator Operator [11.5 h]; Compactor Operator [11.5 h]; Dump Truck Operator [11.5 h]; Water Truck Operator [11.5 h]; Labour [284.8 h]; Telecom Pipe [1547.9] | 33,358.27 |  | RD11 |
| RSZone 2Road 11Telecom NetworkA78220 |  | Zone 2 - Road 11 - Telecom Network - Telecom Pipe - Test | 2d | 2026-11-26 | 2026-11-29 | RSZone 2Road 11Telecom NetworkA78230, RSZone 2Road 11Telecom NetworkA78200, RSZone 2Road 11Telecom NetworkA78210 |  | 89.25d | 88.85d | Contract Price Original Scope [58014.4 SAR]; Pump Operator [20 h]; Equipment Operator [20 h]; Labour [495.3 h]; Telecom Pipe [2692] | 58,014.39 |  | RD11 |
|  | 12 | **Telecom Duct** |  | 2026-03-24 | 2026-11-12 |  |  |  |  |  |  |  |  |
| RSZone 2Road 11Telecom NetworkA78240 |  | Zone 2 - Road 11 - Telecom Network - Telecom Duct - Excavation | 6d | 2026-03-24 A | 2026-03-30 A | RSZone 2Road 01Telecom NetworkA77980 | 100% |  |  | Contract Price Original Scope [827.21 SAR]; Excavator Operator [30 h]; Dump Truck Operator [30 h]; Labour [7.06 h]; Telecom Duct (Road Crossing) [38] | 827.21 | 827.21 | RD11 |
| RSZone 2Road 11Telecom NetworkA78250 |  | Zone 2 - Road 11 - Telecom Network - Telecom Duct - Concrete Pouring | 5d | 2026-03-31 A | 2026-04-05 A | RSZone 2Road 11Telecom NetworkA78240, RSZone 2Road 11Telecom NetworkA78240 FF | 100% |  |  | Contract Price Original Scope [11581 SAR]; Crane Operator [13 h]; Pump Operator [13 h]; Equipment Operator [13 h]; Labour [98.87 h]; Telecom Duct (Road Crossing) [38] | 11,580.96 | 11,580.96 | RD11 |
| RSZone 2Road 11Telecom NetworkA78260 |  | Zone 2 - Road 11 - Telecom Network - Telecom Duct - Test | 2d | 2026-11-09 | 2026-11-10 | RSZone 2Road 11Telecom NetworkA78250 |  | 102.4d | 0d | Contract Price Original Scope [1654.42 SAR]; Pump Operator [20 h]; Equipment Operator [20 h]; Labour [14.12 h]; Telecom Duct (Road Crossing) [38] | 1,654.42 |  | RD11 |
| RSZone 2Road 11Telecom NetworkA78270 |  | Zone 2 - Road 11 - Telecom Network - Telecom Duct - Backfilling | 2d | 2026-11-11 | 2026-11-12 | RSZone 2Road 11Telecom NetworkA78260 |  | 102.4d | 102d | Contract Price Original Scope [2481.63 SAR]; Excavator Operator [20 h]; Compactor Operator [20 h]; Dump Truck Operator [20 h]; Water Truck Operator [20 h]; Labour [21.19 h]; Telecom Duct (Road Crossing) [38] | 2,481.63 |  | RD11 |
|  | 2 | **TELECOM MANHOLE** |  | 2026-08-23 | 2026-11-23 |  |  |  |  |  |  |  |  |
| RSZone 2Road 11Telecom NetworkA78190-old |  | Zone 2 - Road 11 - Telecom Network - TELECOM MANHOLE - Manhole Installation (old) | 60d | 2026-08-23 A | 2026-11-01 A | RSZone 2Road 08Telecom NetworkA78010-old | 100% |  |  | Contract Price Original Scope [270896 SAR]; Crane Operator [12.35 h]; Boom Truck Operator [12.35 h]; Equipment Operator [12.35 h]; Labour [2312.77 h]; Telecom Manhole [18.05] | 270,895.66 | 270,895.66 | RD11 |
| RSZone 2Road 11Telecom NetworkA78190 |  | Zone 2 - Road 11 - Telecom Network - TELECOM MANHOLE - Manhole Installation | 1d | 2026-11-23 | 2026-11-23 | RSZone 2Road 11Telecom NetworkA78190-old, RSZone 2Road 08Telecom NetworkA78010 |  | 76.4d | 0d | Contract Price Original Scope [14257.7 SAR]; Crane Operator [0.65 h]; Boom Truck Operator [0.65 h]; Equipment Operator [0.65 h]; Labour [121.72 h]; Telecom Manhole [0.95] | 14,257.67 |  | RD11 |

| ID | WBS | Activity | Duration | Start | Finish | Predecessors | Complete | Planned start | Planned finish | Total float | Free float | Resources | Cost | Actual cost | MODON |
| --- | --- | --- | --- | --- | --- | --- | --- | --- | --- | --- | --- | --- | --- | --- | --- |
|  | 13 | **Road 12** |  | 2025-12-11 | 2027-03-08 |  |  |  |  |  |  |  |  |  |  |
|  | 3 | **Storm Network** |  | 2026-01-29 | 2027-03-08 |  |  |  |  |  |  |  |  |  |  |
|  | 2 | **Perforated 160 mm** |  | 2026-01-29 | 2026-11-10 |  |  |  |  |  |  |  |  |  |  |
| RSZone 2Road 12Storm NetworkA73660 |  | Zone 2 - Road 12 - Storm Network - Perforated 160 mm - Excavation | 6d | 2026-01-29 A | 2026-02-04 A | RSZone 2Road 11Storm NetworkA74370 | 100% | 2026-01-29 | 2026-02-05 |  |  | Contract Price Original Scope [25653 SAR]; Excavator Operator [30 h]; Dump Truck Operator [30 h]; Labour [219.01 h]; Perforated 160 mm [1605] | 25,652.98 | 25,652.98 | RD12 |
| RSZone 2Road 12Storm NetworkA73670 |  | Zone 2 - Road 12 - Storm Network - Perforated 160 mm - Bedding | 4d | 2026-02-05 A | 2026-02-09 A | RSZone 2Road 12Storm NetworkA73660 | 100% | 2026-02-05 | 2026-02-10 |  |  | Contract Price Original Scope [12826.5 SAR]; Compactor Operator [20 h]; Equipment Operator [20 h]; Water Truck Operator [20 h]; Labour [109.51 h]; Perforated 160 mm [1605] | 12,826.49 | 12,826.49 | RD12 |
| RSZone 2Road 12Storm NetworkA73680 |  | Zone 2 - Road 12 - Storm Network - Perforated 160 mm - Pipe Installation | 6d | 2026-02-10 A | 2026-02-16 A | RSZone 2Road 12Storm NetworkA73670 | 100% |  |  |  |  | Contract Price Original Scope [166744 SAR]; Excavator Operator [40 h]; Crane Operator [40 h]; Equipment Operator [40 h]; Labour [1423.58 h]; Perforated 160 mm [1605] | 166,744.35 | 166,744.35 | RD12 |
| RSZone 2Road 12Storm NetworkA73700 |  | Zone 2 - Road 12 - Storm Network - Perforated 160 mm - Backfilling | 2.9d | 2026-02-17 A | 2026-02-19 A | RSZone 2Road 12Storm NetworkA73680 | 100% |  |  |  |  | Contract Price Original Scope [25653 SAR]; Excavator Operator [20 h]; Compactor Operator [20 h]; Dump Truck Operator [20 h]; Water Truck Operator [20 h]; Labour [219.01 h]; Perforated 160 mm [1605] | 25,652.98 | 25,652.98 | RD12 |
| RSZone 2Road 12Storm NetworkA73690 |  | Zone 2 - Road 12 - Storm Network - Perforated 160 mm - Test | 2d | 2026-11-09 | 2026-11-10 | RSZone 2Road 12Storm NetworkA73700 |  |  |  | 123.4d | 109d | Contract Price Original Scope [25653 SAR]; Pump Operator [20 h]; Equipment Operator [20 h]; Labour [219.01 h]; Perforated 160 mm [1605] | 25,652.98 |  | RD12 |
|  | 6 | **Gravel and Geotextile** |  | 2026-02-08 | 2026-02-10 |  |  |  |  |  |  |  |  |  |  |
| RSZone 2Road 12Storm NetworkA74430 |  | Zone 2 - Road 12 - Storm Network - Gravel and Geotextile - Installation | 3d | 2026-02-08 A | 2026-02-10 A | RSZone 2Road 12Storm NetworkA73700 | 100% |  |  |  |  | Contract Price Original Scope [188264 SAR]; Excavator Operator [8 h]; Dump Truck Operator [8 h]; Equipment Operator [8 h]; Water Truck Operator [8 h]; Labour [1607.3 h]; Gravel and Geotextile [1605] | 188,263.71 | 188,263.71 | RD12 |
|  | 8 | **Manhole** |  | 2027-03-04 | 2027-03-08 |  |  |  |  |  |  |  |  |  |  |
| RSZone 2Road 12Storm NetworkA92400 |  | Zone 2 - Road 12 - Storm Network - Manhole - COVER INSTALLATION | 2d | 2027-03-04 | 2027-03-08 | RSZone 1Road 32Storm NetworkA94920 |  |  |  | 29.4d | 15d | Contract Price Original Scope [33334.2 SAR]; Crane Operator [7 h]; Boom Truck Operator [7 h]; Equipment Operator [7 h]; Labour [284.59 h]; Manholes GRP (new + DI cover only) [12] | 33,334.24 |  | RD12 |
|  | 5 | **Sewage Network** |  | 2026-01-11 | 2026-11-16 |  |  |  |  |  |  |  |  |  |  |
|  | 2 | **UPVC Pipes 150 MM** |  | 2026-01-11 | 2026-01-28 |  |  |  |  |  |  |  |  |  |  |
| RSZone 2Road 12Sewage NetworkA72350 |  | Zone 2 - Road 12 - Sewage Network - UPVC Pipes 150 MM - Excavation | 4d | 2026-01-11 A | 2026-01-14 A | RSZone 2Road 11Sewage NetworkA72180 | 100% |  |  |  |  | Contract Price Original Scope [156.11 SAR]; Excavator Operator [30 h]; Dump Truck Operator [30 h]; Labour [1.33 h]; UPVC Pipes 150 MM [5] | 156.11 | 156.11 | RD12 |
| RSZone 2Road 12Sewage NetworkA72360 |  | Zone 2 - Road 12 - Sewage Network - UPVC Pipes 150 MM - Pipe Installation | 5d | 2026-01-15 A | 2026-01-20 A | RSZone 2Road 12Sewage NetworkA72350 | 100% | 2026-01-15 | 2026-01-21 |  |  | Contract Price Original Scope [676.5 SAR]; Excavator Operator [40 h]; Crane Operator [40 h]; Equipment Operator [40 h]; Labour [5.78 h]; UPVC Pipes 150 MM [5] | 676.5 | 676.5 | RD12 |
| RSZone 2Road 12Sewage NetworkA72370 |  | Zone 2 - Road 12 - Sewage Network - UPVC Pipes 150 MM - Test | 1.9d | 2026-01-21 A | 2026-01-22 A | RSZone 2Road 12Sewage NetworkA72360 | 100% |  |  |  |  | Contract Price Original Scope [104.08 SAR]; Pump Operator [20 h]; Equipment Operator [20 h]; Labour [0.89 h]; UPVC Pipes 150 MM [5] | 104.08 | 104.08 | RD12 |
| RSZone 2Road 12Sewage NetworkA72380 |  | Zone 2 - Road 12 - Sewage Network - UPVC Pipes 150 MM - Backfilling | 4d | 2026-01-25 A | 2026-01-28 A | RSZone 2Road 12Sewage NetworkA72370 | 100% |  |  |  |  | Contract Price Original Scope [104.08 SAR]; Excavator Operator [20 h]; Compactor Operator [20 h]; Dump Truck Operator [20 h]; Water Truck Operator [20 h]; Labour [0.89 h]; UPVC Pipes 150 MM [5] | 104.08 | 104.08 | RD12 |
|  | 1 | **UPVC Pipes 200 MM** |  | 2026-01-18 | 2026-02-01 |  |  |  |  |  |  |  |  |  |  |
| RSZone 2Road 12Sewage NetworkA72710 |  | Zone 2 - Road 12 - Sewage Network - UPVC Pipes 200 MM - Excavation | 4d | 2026-01-18 A | 2026-01-21 A | RSZone 2Road 12Sewage NetworkA72380 | 100% |  |  |  |  | Contract Price Original Scope [153.37 SAR]; Excavator Operator [30 h]; Dump Truck Operator [30 h]; Labour [1.31 h]; UPVC Pipes 200 MM [2] | 153.37 | 153.37 | RD12 |
| RSZone 2Road 12Sewage NetworkA72720 |  | Zone 2 - Road 12 - Sewage Network - UPVC Pipes 200 MM - Pipe Installation | 5d | 2026-01-22 A | 2026-01-27 A | RSZone 2Road 12Sewage NetworkA72710 | 100% | 2026-01-22 | 2026-01-28 |  |  | Contract Price Original Scope [664.6 SAR]; Excavator Operator [40 h]; Crane Operator [40 h]; Equipment Operator [40 h]; Labour [5.67 h]; UPVC Pipes 200 MM [2] | 664.6 | 664.6 | RD12 |
| RSZone 2Road 12Sewage NetworkA72730 |  | Zone 2 - Road 12 - Sewage Network - UPVC Pipes 200 MM - Test | 1.9d | 2026-01-28 A | 2026-01-29 A | RSZone 2Road 12Sewage NetworkA72720 | 100% |  |  |  |  | Contract Price Original Scope [102.25 SAR]; Pump Operator [20 h]; Equipment Operator [20 h]; Labour [0.87 h]; UPVC Pipes 200 MM [2] | 102.25 | 102.25 | RD12 |
| RSZone 2Road 12Sewage NetworkA72740 |  | Zone 2 - Road 12 - Sewage Network - UPVC Pipes 200 MM - Backfilling | 3d | 2026-01-29 A | 2026-02-01 A | RSZone 2Road 12Sewage NetworkA72730 | 100% | 2026-01-29 | 2026-02-02 |  |  | Contract Price Original Scope [102.25 SAR]; Excavator Operator [20 h]; Compactor Operator [20 h]; Dump Truck Operator [20 h]; Water Truck Operator [20 h]; Labour [0.87 h]; UPVC Pipes 200 MM [2] | 102.25 | 102.25 | RD12 |
|  | 8 | **Manhole** |  | 2026-08-18 | 2026-11-16 |  |  |  |  |  |  |  |  |  |  |
| RSZone 2Road 12Sewage NetworkA92430 |  | Zone 2 - Road 12 - Sewage Network - Manhole - Excavation | 2.9d | 2026-08-18 A | 2026-08-20 A | RSZone 2Road 12Sewage NetworkA72740 | 100% |  |  |  |  | Contract Price Original Scope [9501.41 SAR]; Excavator Operator [30 h]; Dump Truck Operator [30 h]; Labour [81.12 h]; Manholes (all depths, GRP) [5] | 9,501.41 | 9,501.41 | RD12 |
| RSZone 2Road 12Sewage NetworkA92440 |  | Zone 2 - Road 12 - Sewage Network - Manhole - FOOTING | 4d | 2026-08-23 A | 2026-08-26 A | RSZone 2Road 12Sewage NetworkA92430 | 100% |  |  |  |  | Contract Price Original Scope [57008.5 SAR]; Crane Operator [7 h]; Pump Operator [7 h]; Equipment Operator [7 h]; Labour [486.71 h]; Manholes (all depths, GRP) [5] | 57,008.48 | 57,008.48 | RD12 |
| RSZone 2Road 12Sewage NetworkA92450 |  | Zone 2 - Road 12 - Sewage Network - Manhole - MH INSTALLATION | 5d | 2026-08-27 A | 2026-09-01 A | RSZone 2Road 12Sewage NetworkA92440 | 100% | 2026-08-27 | 2026-09-02 |  |  | Contract Price Original Scope [66509.9 SAR]; Crane Operator [7 h]; Boom Truck Operator [7 h]; Equipment Operator [7 h]; Labour [567.83 h]; Manholes (all depths, GRP) [5] | 66,509.9 | 66,509.9 | RD12 |
| RSZone 2Road 12Sewage NetworkA92470 |  | Zone 2 - Road 12 - Sewage Network - Manhole - COVER INSTALLATION | 3d | 2026-11-09 | 2026-11-11 | RSZone 2Road 12Sewage NetworkA92450 |  |  |  | 98.4d | 0d | Contract Price Original Scope [91213.6 SAR]; Crane Operator [7 h]; Boom Truck Operator [7 h]; Equipment Operator [7 h]; Labour [778.73 h]; Manholes (all depths, GRP) [24] | 91,213.57 |  | RD12 |
| RSZone 2Road 12Sewage NetworkA92480 |  | Zone 2 - Road 12 - Sewage Network - Manhole - TEST | 2d | 2026-11-12 | 2026-11-14 | RSZone 2Road 12Sewage NetworkA92470 |  |  |  | 98.4d | 0d | Contract Price Original Scope [19002.8 SAR]; Pump Operator [20 h]; Equipment Operator [20 h]; Labour [162.24 h]; Manholes (all depths, GRP) [5] | 19,002.83 |  | RD12 |
| RSZone 2Road 12Sewage NetworkA92490 |  | Zone 2 - Road 12 - Sewage Network - Manhole - BACKFILLING | 2d | 2026-11-15 | 2026-11-16 | RSZone 2Road 12Sewage NetworkA92480 |  |  |  | 98.4d | 97.8d | Contract Price Original Scope [19002.8 SAR]; Excavator Operator [20 h]; Compactor Operator [20 h]; Dump Truck Operator [20 h]; Water Truck Operator [20 h]; Labour [162.24 h]; Manholes (all depths, GRP) [5] | 19,002.83 |  | RD12 |

| ID | WBS | Activity | Duration | Start | Finish | Predecessors | Complete | Total float | Free float | Resources | Cost | Actual cost | MODON |
| --- | --- | --- | --- | --- | --- | --- | --- | --- | --- | --- | --- | --- | --- |
|  | 12 | **Potable Water Network** |  | 2026-02-15 | 2026-11-19 |  |  |  |  |  |  |  |  |
|  | 2 | **Potable Pipes 225 MM** |  | 2026-04-07 | 2026-11-10 |  |  |  |  |  |  |  |  |
| RSZone 2Road 12Potable NetworkA74940 |  | Zone 2 - Road 12 - Potable Water Network - Potable Pipes 225 MM - Test | 2d | 2026-04-07 A | 2026-04-08 A | RSZone 2Road 11Potable NetworkA76760 | 100% |  |  | Contract Price Original Scope [1083.41 SAR]; Pump Operator [20 h]; Equipment Operator [20 h]; Labour [9.25 h]; Potable Pipes 225 MM [39] | 1,083.41 | 1,083.41 | RD12 |
| RSZone 2Road 12Potable NetworkA74950 |  | Zone 2 - Road 12 - Potable Water Network - Potable Pipes 225 MM - Backfilling | 4d | 2026-04-08 A | 2026-04-12 A | RSZone 2Road 12Potable NetworkA74940 | 100% |  |  | Contract Price Original Scope [1083.41 SAR]; Excavator Operator [20 h]; Compactor Operator [20 h]; Dump Truck Operator [20 h]; Water Truck Operator [20 h]; Labour [9.25 h]; Potable Pipes 225 MM [39] | 1,083.41 | 1,083.41 | RD12 |
| RSZone 2Road 12Potable NetworkA74920-old |  | Zone 2 - Road 12 - Potable Water Network - Potable Pipes 225 MM - Excavation (old) | 81d | 2026-07-29 A | 2026-11-01 A | RSZone 2Road 12Potable NetworkA74930-old | 100% |  |  | Contract Price Original Scope [1073.78 SAR]; Excavator Operator [29.73 h]; Dump Truck Operator [29.73 h]; Labour [9.17 h]; Potable Pipes 225 MM [38.65] | 1,073.78 | 1,073.78 | RD12 |
| RSZone 2Road 12Potable NetworkA74930-old |  | Zone 2 - Road 12 - Potable Water Network - Potable Pipes 225 MM - Installation (old) | 78d | 2026-08-02 A | 2026-11-01 A | RSZone 2Road 12Potable NetworkA74940 | 100% |  |  | Contract Price Original Scope [7516.49 SAR]; Labour [64.17 h]; Potable Pipes 225 MM [38.65] | 7,516.49 | 7,516.49 | RD12 |
| RSZone 2Road 12Potable NetworkA74930 |  | Zone 2 - Road 12 - Potable Water Network - Potable Pipes 225 MM - Installation | 1d | 2026-11-09 | 2026-11-09 | RSZone 2Road 12Potable NetworkA74930-old |  | 99.4d | 0d | Contract Price Original Scope [67.41 SAR]; Labour [0.58 h]; Potable Pipes 225 MM [0.35] | 67.41 |  | RD12 |
| RSZone 2Road 12Potable NetworkA74920 |  | Zone 2 - Road 12 - Potable Water Network - Potable Pipes 225 MM - Excavation | 1d | 2026-11-10 | 2026-11-10 | RSZone 2Road 12Potable NetworkA74920-old, RSZone 2Road 12Potable NetworkA74930 |  | 99.4d | 99.2d | Contract Price Original Scope [9.63 SAR]; Excavator Operator [0.27 h]; Dump Truck Operator [0.27 h]; Labour [0.08 h]; Potable Pipes 225 MM [0.35] | 9.63 |  | RD12 |
|  | 4 | **Potable Pipes 250 MM** |  | 2026-02-15 | 2026-02-26 |  |  |  |  |  |  |  |  |
| RSZone 2Road 12Potable NetworkA75280 |  | Zone 2 - Road 12 - Potable Water Network - Potable Pipes 250 MM - Excavation | 4.9d | 2026-02-15 A | 2026-02-19 A | RSZone 2Road 12Potable NetworkA74950 | 100% |  |  | Contract Price Original Scope [3323.1 SAR]; Excavator Operator [30 h]; Dump Truck Operator [30 h]; Labour [28.37 h]; Potable Pipes 250 MM [108] | 3,323.1 | 3,323.1 | RD12 |
| RSZone 2Road 12Potable NetworkA75290 |  | Zone 2 - Road 12 - Potable Water Network - Potable Pipes 250 MM - Installation | 2d | 2026-02-22 A | 2026-02-23 A | RSZone 2Road 12Potable NetworkA75280 | 100% |  |  | Contract Price Original Scope [23261.7 SAR]; Labour [198.6 h]; Potable Pipes 250 MM [108] | 23,261.68 | 23,261.68 | RD12 |
| RSZone 2Road 12Potable NetworkA75300 |  | Zone 2 - Road 12 - Potable Water Network - Potable Pipes 250 MM - Test | 2d | 2026-02-24 A | 2026-02-25 A | RSZone 2Road 12Potable NetworkA75290 | 100% |  |  | Contract Price Original Scope [3323.1 SAR]; Pump Operator [20 h]; Equipment Operator [20 h]; Labour [28.37 h]; Potable Pipes 250 MM [108] | 3,323.1 | 3,323.1 | RD12 |
| RSZone 2Road 12Potable NetworkA75310 |  | Zone 2 - Road 12 - Potable Water Network - Potable Pipes 250 MM - Backfilling | 1.9d | 2026-02-25 A | 2026-02-26 A | RSZone 2Road 12Potable NetworkA75300 | 100% |  |  | Contract Price Original Scope [3323.1 SAR]; Excavator Operator [20 h]; Compactor Operator [20 h]; Dump Truck Operator [20 h]; Water Truck Operator [20 h]; Labour [28.37 h]; Potable Pipes 250 MM [108] | 3,323.1 | 3,323.1 | RD12 |
|  | 10 | **Buried Valves** |  | 2026-08-10 | 2026-11-19 |  |  |  |  |  |  |  |  |
| RSZone 2Road 12Potable NetworkA76090-old |  | Zone 2 - Road 12 - Potable Water Network - Buried Valves - Excavation (old) | 71d | 2026-08-10 A | 2026-11-01 A | RSZone 2Road 12Potable NetworkA75280 | 100% |  |  | Contract Price Original Scope [480.57 SAR]; Excavator Operator [15 h]; Dump Truck Operator [15 h]; Labour [4.1 h]; Buried Valves [3] | 480.57 | 480.57 | RD12 |
| RSZone 2Road 12Potable NetworkA76100-old |  | Zone 2 - Road 12 - Potable Water Network - Buried Valves - Installation (old) | 69d | 2026-08-12 A | 2026-11-01 A | RSZone 2Road 12Potable NetworkA76090-old | 100% |  |  | Contract Price Original Scope [6247.4 SAR]; Labour [53.34 h]; Buried Valves [3] | 6,247.4 | 6,247.4 | RD12 |
| RSZone 2Road 12Potable NetworkA76090 |  | Zone 2 - Road 12 - Potable Water Network - Buried Valves - Excavation | 1.5d | 2026-11-09 | 2026-11-10 | RSZone 2Road 12Potable NetworkA76090-old |  | 91.4d | 0d | Contract Price Original Scope [480.57 SAR]; Excavator Operator [15 h]; Dump Truck Operator [15 h]; Labour [4.1 h]; Buried Valves [3] | 480.57 |  | RD12 |
| RSZone 2Road 12Potable NetworkA76100 |  | Zone 2 - Road 12 - Potable Water Network - Buried Valves - Installation | 1.5d | 2026-11-10 | 2026-11-11 | RSZone 2Road 12Potable NetworkA76100-old, RSZone 2Road 12Potable NetworkA76090 |  | 91.4d | 0d | Contract Price Original Scope [6247.4 SAR]; Labour [53.34 h]; Buried Valves [3] | 6,247.4 |  | RD12 |
| RSZone 2Road 12Potable NetworkA76110 |  | Zone 2 - Road 12 - Potable Water Network - Buried Valves - Surface Box | 3d | 2026-11-12 | 2026-11-15 | RSZone 2Road 12Potable NetworkA76100, RSZone 2Road 12Potable NetworkA76090 |  | 91.4d | 0d | Labour; Buried Valves [6] |  |  | RD12 |
| RSZone 2Road 12Potable NetworkA76120 |  | Zone 2 - Road 12 - Potable Water Network - Buried Valves - Test | 2d | 2026-11-16 | 2026-11-17 | RSZone 2Road 12Potable NetworkA76110 |  | 91.4d | 0d | Contract Price Original Scope [3844.55 SAR]; Pump Operator [20 h]; Equipment Operator [20 h]; Labour [32.82 h]; Buried Valves [6] | 3,844.55 |  | RD12 |
| RSZone 2Road 12Potable NetworkA76130 |  | Zone 2 - Road 12 - Potable Water Network - Buried Valves - Backfilling | 2d | 2026-11-18 | 2026-11-19 | RSZone 2Road 12Potable NetworkA76120 |  | 91.4d | 91.2d | Contract Price Original Scope [1922.28 SAR]; Excavator Operator [20 h]; Compactor Operator [20 h]; Dump Truck Operator [20 h]; Water Truck Operator [20 h]; Labour [16.41 h]; Buried Valves [6] | 1,922.28 |  | RD12 |
|  | 11 | **FIRE HYDRANT** |  | 2026-03-15 | 2026-11-16 |  |  |  |  |  |  |  |  |
| RSZone 2Road 12Potable NetworkA77380 |  | Zone 2 - Road 12 - Potable Water Network - FIRE HYDRANT - Excavation | 3d | 2026-03-15 A | 2026-03-17 A | RSZone 2Road 12Potable NetworkA75310 | 100% |  |  | Contract Price Original Scope [8323.69 SAR]; Excavator Operator [30 h]; Dump Truck Operator [30 h]; Labour [71.06 h]; Fire Hydrant [6] | 8,323.69 | 8,323.69 | RD12 |
| RSZone 2Road 12Potable NetworkA77390 |  | Zone 2 - Road 12 - Potable Water Network - FIRE HYDRANT - Buried Gate Valve Installation | 2d | 2026-03-18 A | 2026-03-19 A | RSZone 2Road 12Potable NetworkA77380, RSZone 2Road 12Potable NetworkA77380 FF | 100% |  |  | Labour; Fire Hydrant [6] |  |  | RD12 |
| RSZone 2Road 12Potable NetworkA77400 |  | Zone 2 - Road 12 - Potable Water Network - FIRE HYDRANT - Fire Hydrant Installation | 4d | 2026-03-22 A | 2026-03-25 A | RSZone 2Road 12Potable NetworkA77390, RSZone 2Road 12Potable NetworkA77390 FF | 100% |  |  | Contract Price Original Scope [60762.9 SAR]; Labour [518.76 h]; Fire Hydrant [6] | 60,762.95 | 60,762.95 | RD12 |
| RSZone 2Road 12Potable NetworkA77410 |  | Zone 2 - Road 12 - Potable Water Network - FIRE HYDRANT - Surface Box | 3d | 2026-11-09 | 2026-11-11 | RSZone 2Road 12Potable NetworkA77400 |  | 94.4d | 0d | Labour; Fire Hydrant [6] |  |  | RD12 |
| RSZone 2Road 12Potable NetworkA77420 |  | Zone 2 - Road 12 - Potable Water Network - FIRE HYDRANT - Test | 2d | 2026-11-12 | 2026-11-14 | RSZone 2Road 12Potable NetworkA77410 |  | 94.4d | 0d | Contract Price Original Scope [5826.58 SAR]; Pump Operator [20 h]; Equipment Operator [20 h]; Labour [49.74 h]; Fire Hydrant [6] | 5,826.58 |  | RD12 |
| RSZone 2Road 12Potable NetworkA77430 |  | Zone 2 - Road 12 - Potable Water Network - FIRE HYDRANT - Backfilling | 2d | 2026-11-15 | 2026-11-16 | RSZone 2Road 12Potable NetworkA77420 |  | 94.4d | 94.2d | Contract Price Original Scope [8323.69 SAR]; Excavator Operator [20 h]; Compactor Operator [20 h]; Dump Truck Operator [20 h]; Water Truck Operator [20 h]; Labour [71.06 h]; Fire Hydrant [6] | 8,323.69 |  | RD12 |

| ID | WBS | Activity | Duration | Start | Finish | Predecessors | Complete | Planned start | Planned finish | Total float | Free float | Resources | Cost | Actual cost | MODON |
| --- | --- | --- | --- | --- | --- | --- | --- | --- | --- | --- | --- | --- | --- | --- | --- |
|  | 6 | **Elbows** |  | 2026-02-18 | 2026-02-19 |  |  |  |  |  |  |  |  |  |  |
| RSZone 2Road 12Potable NetworkA75650 |  | Zone 2 - Road 12 - Potable Water Network - Elbows - Installation | 1.9d | 2026-02-18 A | 2026-02-19 A | RSZone 2Road 12Potable NetworkA77400 | 100% |  |  |  |  | Contract Price Original Scope [5628.73 SAR]; Labour [48.06 h]; Fittings - Elbows (all sizes) [3] | 5,628.73 | 5,628.73 | RD12 |
|  | 7 | **End Cap** |  | 2026-02-26 | 2026-03-02 |  |  |  |  |  |  |  |  |  |  |
| RSZone 2Road 12Potable NetworkA75720 |  | Zone 2 - Road 12 - Potable Water Network - End Cap - Installation | 4d | 2026-02-26 A | 2026-03-02 A | RSZone 2Road 12Potable NetworkA75650 | 100% | 2026-02-26 | 2026-03-03 |  |  | Contract Price Original Scope [730.98 SAR]; Labour [6.24 h]; Fittings - End Caps (all sizes) [1] | 730.98 | 730.98 | RD12 |
|  | 9 | **Sand Bedding** |  | 2026-03-03 | 2026-03-04 |  |  |  |  |  |  |  |  |  |  |
| RSZone 2Road 12Potable NetworkA75850 |  | Zone 2 - Road 12 - Potable Water Network - Sand Bedding - Bedding | 2d | 2026-03-03 A | 2026-03-04 A | RSZone 2Road 12Potable NetworkA75720 | 100% |  |  |  |  | Contract Price Original Scope [2731.95 SAR]; Compactor Operator [20 h]; Equipment Operator [20 h]; Water Truck Operator [20 h]; Labour [23.32 h]; Sand Bedding [147] | 2,731.95 | 2,731.95 | RD12 |
|  | 22 | **Thurst Blocks** |  | 2026-08-03 | 2026-11-09 |  |  |  |  |  |  |  |  |  |  |
| RSZone 2Road 12Potable NetworkA75790-old |  | Zone 2 - Road 12 - Potable Water Network - Thurst Blocks - Thrust Block (old) | 77d | 2026-08-03 A | 2026-11-01 A | RSZone 2Road 12Potable NetworkA75850 | 100% |  |  |  |  | Contract Price Original Scope [16866.7 SAR]; Crane Operator [19.17 h]; Pump Operator [19.17 h]; Equipment Operator [19.17 h]; Labour [144 h]; Thrust Blocks [5] | 16,866.7 | 16,866.7 | RD12 |
| RSZone 2Road 12Potable NetworkA75790 |  | Zone 2 - Road 12 - Potable Water Network - Thurst Blocks - Thrust Block | 1d | 2026-11-09 | 2026-11-09 | RSZone 2Road 12Potable NetworkA75790-old |  |  |  | 100.4d | 100.2d | Contract Price Original Scope [3373.34 SAR]; Crane Operator [3.83 h]; Pump Operator [3.83 h]; Equipment Operator [3.83 h]; Labour [28.8 h]; Thrust Blocks [1] | 3,373.34 |  | RD12 |
|  | 1 | **Lateral Irrigation Network** |  | 2025-12-11 | 2026-11-16 |  |  |  |  |  |  |  |  |  |  |
|  | 2 | **HDPE Pipes 125 MM** |  | 2025-12-11 | 2026-11-12 |  |  |  |  |  |  |  |  |  |  |
| RSZone 2Road 12Irrigation NetworkA68990 |  | Zone 2 - Road 12 - Lateral Irrigation Network - HDPE Pipes 125 MM - Excavation | 6d | 2025-12-11 A | 2025-12-17 A | RSZone 2Road 11Irrigation NetworkA95050 | 100% | 2025-12-11 | 2025-12-18 |  |  | Contract Price Original Scope [4081.13 SAR]; Excavator Operator [30 h]; Dump Truck Operator [30 h]; Labour [34.84 h]; HDPE Pipes 125 MM [294] | 4,081.13 | 4,081.13 | RD12 |
| RSZone 2Road 12Irrigation NetworkA69000 |  | Zone 2 - Road 12 - Lateral Irrigation Network - HDPE Pipes 125 MM - Pipe Installation | 4d | 2025-12-18 A | 2025-12-22 A | RSZone 2Road 12Irrigation NetworkA68990 | 100% | 2025-12-18 | 2025-12-23 |  |  | Contract Price Original Scope [28567.9 SAR]; Excavator Operator [40 h]; Crane Operator [40 h]; Equipment Operator [40 h]; Labour [243.9 h]; HDPE Pipes 125 MM [294] | 28,567.89 | 28,567.89 | RD12 |
| RSZone 2Road 12Irrigation NetworkA69010 |  | Zone 2 - Road 12 - Lateral Irrigation Network - HDPE Pipes 125 MM - Test | 2d | 2026-11-09 | 2026-11-10 | RSZone 2Road 12Irrigation NetworkA69000 |  |  |  | 97.4d | 0d | Contract Price Original Scope [4081.13 SAR]; Pump Operator [20 h]; Equipment Operator [20 h]; Labour [34.84 h]; HDPE Pipes 125 MM [294] | 4,081.13 |  | RD12 |
| RSZone 2Road 12Irrigation NetworkA69020 |  | Zone 2 - Road 12 - Lateral Irrigation Network - HDPE Pipes 125 MM - Backfilling | 2d | 2026-11-11 | 2026-11-12 | RSZone 2Road 12Irrigation NetworkA69010 |  |  |  | 97.4d | 96.76d | Contract Price Original Scope [4081.13 SAR]; Excavator Operator [20 h]; Compactor Operator [20 h]; Dump Truck Operator [20 h]; Water Truck Operator [20 h]; Labour [34.84 h]; HDPE Pipes 125 MM [294] | 4,081.13 |  | RD12 |
|  | 5 | **HDPE Fitting** |  | 2025-12-16 | 2025-12-23 |  |  |  |  |  |  |  |  |  |  |
|  | 3 | **Tees for Pipe 125 MM** |  | 2025-12-21 | 2025-12-23 |  |  |  |  |  |  |  |  |  |  |
| RSZone 2Road 12Irrigation NetworkA69370 |  | Zone 2 - Road 12 - Lateral Irrigation Network - Tees for Pipe 125 MM - Installation | 3d | 2025-12-21 A | 2025-12-23 A | RSZone 2Road 12Irrigation NetworkA69000 | 100% |  |  |  |  | Contract Price Original Scope [9216.36 SAR]; Labour [78.68 h]; Fittings - Tees (all sizes) [6] | 9,216.36 | 9,216.36 | RD12 |
|  | 1 | **Elbows for Pipe 125 MM** |  | 2025-12-16 | 2025-12-18 |  |  |  |  |  |  |  |  |  |  |
| RSZone 2Road 12Irrigation NetworkA69270 |  | Zone 2 - Road 12 - Lateral Irrigation Network - Elbows for Pipe 125 MM - Installation | 2.9d | 2025-12-16 A | 2025-12-18 A | RSZone 2Road 12Irrigation NetworkA69370 | 100% |  |  |  |  | Contract Price Original Scope [7796.75 SAR]; Labour [66.56 h]; Fittings - Elbows (all sizes) [6] | 7,796.75 | 7,796.75 | RD12 |
|  | 1 | **Valves** |  | 2025-12-28 | 2026-11-16 |  |  |  |  |  |  |  |  |  |  |
|  | 1 | **Buried Valves** |  | 2025-12-28 | 2026-11-16 |  |  |  |  |  |  |  |  |  |  |
| RSZone 2Road 12Irrigation NetworkA70170 |  | Zone 2 - Road 12 - Lateral Irrigation Network - Buried Valves - Excavation | 3d | 2025-12-28 A | 2025-12-30 A | RSZone 2Road 12Irrigation NetworkA69270 | 100% |  |  |  |  | Contract Price Original Scope [1008.85 SAR]; Excavator Operator [30 h]; Dump Truck Operator [30 h]; Labour [8.61 h]; Buried Valves [15] | 1,008.85 | 1,008.85 | RD12 |
| RSZone 2Road 12Irrigation NetworkA70180 |  | Zone 2 - Road 12 - Lateral Irrigation Network - Buried Valves - Installation | 1.9d | 2025-12-31 A | 2026-01-01 A | RSZone 2Road 12Irrigation NetworkA70170 | 100% |  |  |  |  | Contract Price Original Scope [13115 SAR]; Labour [111.97 h]; Buried Valves [15] | 13,115.04 | 13,115.04 | RD12 |
| RSZone 2Road 12Irrigation NetworkA70190 |  | Zone 2 - Road 12 - Lateral Irrigation Network - Buried Valves - Surface Box | 3d | 2026-11-09 | 2026-11-11 | RSZone 2Road 12Irrigation NetworkA70180 |  |  |  | 94.4d | 0d | Labour; Buried Valves [15] |  |  | RD12 |
| RSZone 2Road 12Irrigation NetworkA70200 |  | Zone 2 - Road 12 - Lateral Irrigation Network - Buried Valves - Test | 2d | 2026-11-12 | 2026-11-14 | RSZone 2Road 12Irrigation NetworkA70190 |  |  |  | 94.4d | 0d | Contract Price Original Scope [4035.4 SAR]; Pump Operator [20 h]; Equipment Operator [20 h]; Labour [34.45 h]; Buried Valves [15] | 4,035.4 |  | RD12 |
| RSZone 2Road 12Irrigation NetworkA70210 |  | Zone 2 - Road 12 - Lateral Irrigation Network - Buried Valves - Backfilling | 2d | 2026-11-15 | 2026-11-16 | RSZone 2Road 12Irrigation NetworkA70200 |  |  |  | 94.4d | 93.76d | Contract Price Original Scope [2017.7 SAR]; Excavator Operator [20 h]; Compactor Operator [20 h]; Dump Truck Operator [20 h]; Water Truck Operator [20 h]; Labour [17.23 h]; Buried Valves [15] | 2,017.7 |  | RD12 |

| ID | WBS | Activity | Duration | Start | Finish | Predecessors | Complete | Planned start | Planned finish | Total float | Free float | Resources | Cost | Actual cost | MODON |
| --- | --- | --- | --- | --- | --- | --- | --- | --- | --- | --- | --- | --- | --- | --- | --- |
|  | 4 | **Bedding** |  | 2025-12-29 | 2025-12-31 |  |  |  |  |  |  |  |  |  |  |
| RSZone 2Road 12Irrigation NetworkA70740 |  | Zone 2 - Road 12 - Lateral Irrigation Network - Bedding - Bedding | 3d | 2025-12-29 A | 2025-12-31 A | RSZone 2Road 12Irrigation NetworkA70180 | 100% |  |  |  |  | Contract Price Original Scope [7571.37 SAR]; Compactor Operator [20 h]; Equipment Operator [20 h]; Water Truck Operator [20 h]; Labour [64.64 h]; Bedding [294] | 7,571.37 | 7,571.37 | RD12 |
|  | 6 | **Thrust Block** |  | 2025-12-31 | 2026-01-01 |  |  |  |  |  |  |  |  |  |  |
| RSZone 2Road 12Irrigation NetworkA70750 |  | Zone 2 - Road 12 - Lateral Irrigation Network - Thrust Block - Thrust Block | 1.9d | 2025-12-31 A | 2026-01-01 A | RSZone 2Road 12Irrigation NetworkA70740 | 100% |  |  |  |  | Contract Price Original Scope [12261.1 SAR]; Crane Operator [12 h]; Pump Operator [12 h]; Equipment Operator [12 h]; Labour [104.68 h]; Thrust Blocks [12] | 12,261.12 | 12,261.12 | RD12 |
|  | 2 | **Telecom** |  | 2026-08-23 | 2026-11-17 |  |  |  |  |  |  |  |  |  |  |
|  | 2 | **TELECOM MANHOLE** |  | 2026-08-23 | 2026-11-17 |  |  |  |  |  |  |  |  |  |  |
| RSZone 2Road 12Telecom NetworkA78280-old |  | Zone 2 - Road 12 - Telecom Network - TELECOM MANHOLE - Manhole Installation (old) | 60d | 2026-08-23 A | 2026-11-01 A | RSZone 2Road 12Telecom NetworkA95870-old | 100% |  |  |  |  | Contract Price Original Scope [114061 SAR]; Crane Operator [12.35 h]; Boom Truck Operator [12.35 h]; Equipment Operator [12.35 h]; Labour [973.8 h]; Telecom Manhole [7.6] | 114,061.33 | 114,061.33 | RD12 |
| RSZone 2Road 12Telecom NetworkA95860-old |  | Zone 2 - Road 12 - Telecom Network - TELECOM MANHOLE - Excavation (old) | 59d | 2026-08-24 A | 2026-11-01 A | RSZone 2Road 11Telecom NetworkA78240 | 100% |  |  |  |  | Contract Price Original Scope [18169.7 SAR]; Labour [155.12 h]; Telecom Pipe [843.12] | 18,169.69 | 18,169.69 | RD12 |
| RSZone 2Road 12Telecom NetworkA95870-old |  | Zone 2 - Road 12 - Telecom Network - TELECOM MANHOLE - Concrete Pouring (old) | 57d | 2026-08-26 A | 2026-11-01 A | RSZone 2Road 12Telecom NetworkA95860-old | 100% |  |  |  |  | Contract Price Original Scope [127188 SAR]; Labour [1085.86 h]; Telecom Pipe [843.12] | 127,187.82 | 127,187.82 | RD12 |
| RSZone 2Road 12Telecom NetworkA95890-old |  | Zone 2 - Road 12 - Telecom Network - TELECOM MANHOLE - BackFilling (old) | 56d | 2026-08-27 A | 2026-11-01 A | RSZone 2Road 12Telecom NetworkA78280-old | 100% | 2026-08-27 | 2026-11-02 |  |  | Contract Price Original Scope [18169.7 SAR]; Labour [155.12 h]; Telecom Pipe [843.12] | 18,169.69 | 18,169.69 | RD12 |
| RSZone 2Road 12Telecom NetworkA95860 |  | Zone 2 - Road 12 - Telecom Network - TELECOM MANHOLE - Excavation | 1d | 2026-11-09 | 2026-11-09 | RSZone 2Road 12Telecom NetworkA95860-old |  |  |  | 98.4d | 0d | Contract Price Original Scope [5363.64 SAR]; Labour [45.79 h]; Telecom Pipe [248.88] | 5,363.64 |  | RD12 |
| RSZone 2Road 12Telecom NetworkA95870 |  | Zone 2 - Road 12 - Telecom Network - TELECOM MANHOLE - Concrete Pouring | 1d | 2026-11-10 | 2026-11-10 | RSZone 2Road 12Telecom NetworkA95870-old, RSZone 2Road 12Telecom NetworkA95860 |  |  |  | 98.4d | 0d | Contract Price Original Scope [37545.5 SAR]; Labour [320.54 h]; Telecom Pipe [248.88] | 37,545.46 |  | RD12 |
| RSZone 2Road 12Telecom NetworkA78280 |  | Zone 2 - Road 12 - Telecom Network - TELECOM MANHOLE - Manhole Installation | 1d | 2026-11-11 | 2026-11-11 | RSZone 2Road 12Telecom NetworkA78280-old, RSZone 2Road 12Telecom NetworkA95870 |  |  |  | 98.4d | 0d | Contract Price Original Scope [6003.23 SAR]; Crane Operator [0.65 h]; Boom Truck Operator [0.65 h]; Equipment Operator [0.65 h]; Labour [51.25 h]; Telecom Manhole [0.4] | 6,003.23 |  | RD12 |
| RSZone 2Road 12Telecom NetworkA95890 |  | Zone 2 - Road 12 - Telecom Network - TELECOM MANHOLE - BackFilling | 1d | 2026-11-12 | 2026-11-12 | RSZone 2Road 12Telecom NetworkA95890-old, RSZone 2Road 12Telecom NetworkA78280 |  |  |  | 98.4d | 0d | Contract Price Original Scope [5363.64 SAR]; Labour [45.79 h]; Telecom Pipe [248.88] | 5,363.64 |  | RD12 |
| RSZone 2Road 12Telecom NetworkA95880 |  | Zone 2 - Road 12 - Telecom Network - TELECOM MANHOLE - Test | 4d | 2026-11-14 | 2026-11-17 | RSZone 2Road 12Telecom NetworkA95890, RSZone 2Road 12Telecom NetworkA78280, RSZone 2Road 12Telecom NetworkA95870 |  |  |  | 98.4d | 98d | Contract Price Original Scope [23533.3 SAR]; Labour [200.92 h]; Telecom Pipe [1092] | 23,533.33 |  | RD12 |
|  | 14 | **Road 13** |  | 2025-12-14 | 2027-01-03 |  |  |  |  |  |  |  |  |  |  |
|  | 1 | **Sewage Network** |  | 2026-10-08 | 2026-11-19 |  |  |  |  |  |  |  |  |  |  |
|  | 8 | **Manhole** |  | 2026-10-08 | 2026-11-19 |  |  |  |  |  |  |  |  |  |  |
| RSZone 2Road 13Sewage NetworkA92610-old |  | Zone 2 - Road 13 - Sewage Network - Manhole - Excavation (old) | 21d | 2026-10-08 A | 2026-11-01 A | RSZone 2Road 12Sewage NetworkA92430 | 100% | 2026-10-08 | 2026-11-02 |  |  | Contract Price Original Scope [22799.6 SAR]; Excavator Operator [25.71 h]; Dump Truck Operator [25.71 h]; Labour [194.65 h]; Manholes (all depths, GRP) [12] | 22,799.59 | 22,799.59 | RD13 |
| RSZone 2Road 13Sewage NetworkA92620-old |  | Zone 2 - Road 13 - Sewage Network - Manhole - FOOTING (old) | 18d | 2026-10-12 A | 2026-11-01 A | RSZone 2Road 13Sewage NetworkA92610-old | 100% |  |  |  |  | Contract Price Original Scope [125393 SAR]; Crane Operator [5.5 h]; Pump Operator [5.5 h]; Equipment Operator [5.5 h]; Labour [1070.54 h]; Manholes (all depths, GRP) [11] | 125,393.32 | 125,393.32 | RD13 |
| RSZone 2Road 13Sewage NetworkA92630-old |  | Zone 2 - Road 13 - Sewage Network - Manhole - MH INSTALLATION (old) | 17d | 2026-10-13 A | 2026-11-01 A | RSZone 2Road 13Sewage NetworkA92620-old | 100% |  |  |  |  | Contract Price Original Scope [146292 SAR]; Crane Operator [5.5 h]; Boom Truck Operator [5.5 h]; Equipment Operator [5.5 h]; Labour [1248.97 h]; Manholes (all depths, GRP) [11] | 146,292.21 | 146,292.21 | RD13 |
| RSZone 2Road 13Sewage NetworkA92610 |  | Zone 2 - Road 13 - Sewage Network - Manhole - Excavation | 1d | 2026-11-09 | 2026-11-09 | RSZone 2Road 13Sewage NetworkA92610-old |  |  |  | 95.4d | 0d | Contract Price Original Scope [3804.37 SAR]; Excavator Operator [4.29 h]; Dump Truck Operator [4.29 h]; Labour [32.48 h]; Manholes (all depths, GRP) [2] | 3,804.37 |  | RD13 |
| RSZone 2Road 13Sewage NetworkA92620 |  | Zone 2 - Road 13 - Sewage Network - Manhole - FOOTING | 1d | 2026-11-10 | 2026-11-10 | RSZone 2Road 13Sewage NetworkA92620-old, RSZone 2Road 13Sewage NetworkA92610 |  |  |  | 95.4d | 0d | Contract Price Original Scope [34230.4 SAR]; Crane Operator [1.5 h]; Pump Operator [1.5 h]; Equipment Operator [1.5 h]; Labour [292.24 h]; Manholes (all depths, GRP) [3] | 34,230.43 |  | RD13 |
| RSZone 2Road 13Sewage NetworkA92630 |  | Zone 2 - Road 13 - Sewage Network - Manhole - MH INSTALLATION | 1d | 2026-11-11 | 2026-11-11 | RSZone 2Road 13Sewage NetworkA92630-old, RSZone 2Road 13Sewage NetworkA92620 |  |  |  | 95.4d | 0d | Contract Price Original Scope [39935.5 SAR]; Crane Operator [1.5 h]; Boom Truck Operator [1.5 h]; Equipment Operator [1.5 h]; Labour [340.95 h]; Manholes (all depths, GRP) [3] | 39,935.5 |  | RD13 |
| RSZone 2Road 13Sewage NetworkA92640 |  | Zone 2 - Road 13 - Sewage Network - Manhole - COVER INSTALLATION | 3d | 2026-11-12 | 2026-11-15 | RSZone 2Road 13Sewage NetworkA92630, RSZone 2Road 13Sewage NetworkA92620 |  |  |  | 95.4d | 0d | Contract Price Original Scope [155823 SAR]; Crane Operator [7 h]; Boom Truck Operator [7 h]; Equipment Operator [7 h]; Labour [1330.34 h]; Manholes (all depths, GRP) [41] | 155,823.18 |  | RD13 |
| RSZone 2Road 13Sewage NetworkA92650 |  | Zone 2 - Road 13 - Sewage Network - Manhole - TEST | 2d | 2026-11-16 | 2026-11-17 | RSZone 2Road 13Sewage NetworkA92640, RSZone 2Road 13Sewage NetworkA92610 |  |  |  | 95.4d | 0d | Contract Price Original Scope [53207.9 SAR]; Pump Operator [20 h]; Equipment Operator [20 h]; Labour [454.26 h]; Manholes (all depths, GRP) [14] | 53,207.92 |  | RD13 |
| RSZone 2Road 13Sewage NetworkA92660 |  | Zone 2 - Road 13 - Sewage Network - Manhole - BACKFILLING | 2d | 2026-11-18 | 2026-11-19 | RSZone 2Road 13Sewage NetworkA92650 |  |  |  | 95.4d | 94.8d | Contract Price Original Scope [53207.9 SAR]; Excavator Operator [20 h]; Compactor Operator [20 h]; Dump Truck Operator [20 h]; Water Truck Operator [20 h]; Labour [454.26 h]; Manholes (all depths, GRP) [14] | 53,207.92 |  | RD13 |

| ID | WBS | Activity | Duration | Start | Finish | Predecessors | Complete | Planned start | Planned finish | Total float | Free float | Resources | Cost | Actual cost | MODON |
| --- | --- | --- | --- | --- | --- | --- | --- | --- | --- | --- | --- | --- | --- | --- | --- |
|  | 10 | **Potable Water Network** |  | 2026-02-11 | 2027-01-03 |  |  |  |  |  |  |  |  |  |  |
|  | 2 | **Potable Pipes 225 MM** |  | 2026-02-11 | 2026-11-16 |  |  |  |  |  |  |  |  |  |  |
| RSZone 2Road 13Potable NetworkA75040 |  | Zone 2 - Road 13 - Potable Water Network - Potable Pipes 225 MM - Excavation | 4d | 2026-02-11 A | 2026-02-15 A | RSZone 2Road 12Potable NetworkA75850 | 100% |  |  |  |  | Contract Price Original Scope [750.06 SAR]; Excavator Operator [30 h]; Dump Truck Operator [30 h]; Labour [6.4 h]; Potable Pipes 225 MM [27] | 750.06 | 750.06 | RD13 |
| RSZone 2Road 13Potable NetworkA75050 |  | Zone 2 - Road 13 - Potable Water Network - Potable Pipes 225 MM - Installation | 3d | 2026-11-09 | 2026-11-11 | RSZone 2Road 13Potable NetworkA75040 |  |  |  | 94.4d | 0d | Contract Price Original Scope [5250.39 SAR]; Labour [44.83 h]; Potable Pipes 225 MM [27] | 5,250.39 |  | RD13 |
| RSZone 2Road 13Potable NetworkA75060 |  | Zone 2 - Road 13 - Potable Water Network - Potable Pipes 225 MM - Test | 2d | 2026-11-12 | 2026-11-14 | RSZone 2Road 13Potable NetworkA75050 |  |  |  | 94.4d | 0d | Contract Price Original Scope [750.06 SAR]; Pump Operator [20 h]; Equipment Operator [20 h]; Labour [6.4 h]; Potable Pipes 225 MM [27] | 750.06 |  | RD13 |
| RSZone 2Road 13Potable NetworkA75070 |  | Zone 2 - Road 13 - Potable Water Network - Potable Pipes 225 MM - Backfilling | 2d | 2026-11-15 | 2026-11-16 | RSZone 2Road 13Potable NetworkA75060 |  |  |  | 94.4d | 94.2d | Contract Price Original Scope [750.06 SAR]; Excavator Operator [20 h]; Compactor Operator [20 h]; Dump Truck Operator [20 h]; Water Truck Operator [20 h]; Labour [6.4 h]; Potable Pipes 225 MM [27] | 750.06 |  | RD13 |
|  | 3 | **Potable Pipes 250 MM** |  | 2026-07-30 | 2026-11-15 |  |  |  |  |  |  |  |  |  |  |
| RSZone 2Road 13Potable NetworkA75400-old |  | Zone 2 - Road 13 - Potable Water Network - Potable Pipes 250 MM - Excavation (old) | 80d | 2026-07-30 A | 2026-11-01 A | RSZone 2Road 13Potable NetworkA75040 | 100% | 2026-07-30 | 2026-11-02 |  |  | Contract Price Original Scope [2706.2 SAR]; Excavator Operator [29.98 h]; Dump Truck Operator [29.98 h]; Labour [23.1 h]; Potable Pipes 250 MM [87.95] | 2,706.2 | 2,706.2 | RD13 |
| RSZone 2Road 13Potable NetworkA75410-old |  | Zone 2 - Road 13 - Potable Water Network - Potable Pipes 250 MM - Installation (old) | 78d | 2026-08-02 A | 2026-11-01 A | RSZone 2Road 13Potable NetworkA75400-old | 100% |  |  |  |  | Contract Price Original Scope [18943.4 SAR]; Labour [161.73 h]; Potable Pipes 250 MM [87.95] | 18,943.43 | 18,943.43 | RD13 |
| RSZone 2Road 13Potable NetworkA75400 |  | Zone 2 - Road 13 - Potable Water Network - Potable Pipes 250 MM - Excavation | 1d | 2026-11-09 | 2026-11-09 | RSZone 2Road 13Potable NetworkA75400-old |  |  |  | 95.4d | 0d | Contract Price Original Scope [1.5 SAR]; Excavator Operator [0.02 h]; Dump Truck Operator [0.02 h]; Labour [0.01 h]; Potable Pipes 250 MM [0.05] | 1.5 |  | RD13 |
| RSZone 2Road 13Potable NetworkA75410 |  | Zone 2 - Road 13 - Potable Water Network - Potable Pipes 250 MM - Installation | 1d | 2026-11-10 | 2026-11-10 | RSZone 2Road 13Potable NetworkA75410-old, RSZone 2Road 13Potable NetworkA75400 |  |  |  | 95.4d | 0d | Contract Price Original Scope [10.53 SAR]; Labour [0.09 h]; Potable Pipes 250 MM [0.05] | 10.53 |  | RD13 |
| RSZone 2Road 13Potable NetworkA75420 |  | Zone 2 - Road 13 - Potable Water Network - Potable Pipes 250 MM - Test | 2d | 2026-11-11 | 2026-11-12 | RSZone 2Road 13Potable NetworkA75410, RSZone 2Road 13Potable NetworkA75400 |  |  |  | 95.4d | 0d | Contract Price Original Scope [2707.71 SAR]; Pump Operator [20 h]; Equipment Operator [20 h]; Labour [23.12 h]; Potable Pipes 250 MM [88] | 2,707.71 |  | RD13 |
| RSZone 2Road 13Potable NetworkA75430 |  | Zone 2 - Road 13 - Potable Water Network - Potable Pipes 250 MM - Backfilling | 2d | 2026-11-14 | 2026-11-15 | RSZone 2Road 13Potable NetworkA75420 |  |  |  | 95.4d | 95.2d | Contract Price Original Scope [2707.71 SAR]; Excavator Operator [20 h]; Compactor Operator [20 h]; Dump Truck Operator [20 h]; Water Truck Operator [20 h]; Labour [23.12 h]; Potable Pipes 250 MM [88] | 2,707.71 |  | RD13 |
|  | 4 | **End Cap** |  | 2026-12-30 | 2027-01-03 |  |  |  |  |  |  |  |  |  |  |
| RSZone 2Road 13Potable NetworkA75730 |  | Zone 2 - Road 13 - Potable Water Network - End Cap - Installation | 3d | 2026-12-30 | 2027-01-03 | RSZone 1Road 25Potable NetworkA90040 |  |  |  | 0.2d | 0d | Contract Price Original Scope [1461.95 SAR]; Labour [12.48 h]; Fittings - End Caps (all sizes) [2] | 1,461.95 |  | RD13 |
|  | 1 | **Elbows** |  | 2026-02-22 | 2026-02-23 |  |  |  |  |  |  |  |  |  |  |
| RSZone 2Road 13Potable NetworkA75660 |  | Zone 2 - Road 13 - Potable Water Network - Elbows - Installation | 2d | 2026-02-22 A | 2026-02-23 A | RSZone 2Road 13Potable NetworkA75040 | 100% |  |  |  |  | Contract Price Original Scope [3752.49 SAR]; Labour [32.04 h]; Fittings - Elbows (all sizes) [2] | 3,752.49 | 3,752.49 | RD13 |
|  | 8 | **Buried Valves** |  | 2026-08-11 | 2026-11-19 |  |  |  |  |  |  |  |  |  |  |
| RSZone 2Road 13Potable NetworkA76140-old |  | Zone 2 - Road 13 - Potable Water Network - Buried Valves - Excavation (old) | 70d | 2026-08-11 A | 2026-11-01 A | RSZone 2Road 13Potable NetworkA75660 | 100% |  |  |  |  | Contract Price Original Scope [800.95 SAR]; Excavator Operator [15 h]; Dump Truck Operator [15 h]; Labour [6.84 h]; Buried Valves [5] | 800.95 | 800.95 | RD13 |
| RSZone 2Road 13Potable NetworkA76150-old |  | Zone 2 - Road 13 - Potable Water Network - Buried Valves - Installation (old) | 68d | 2026-08-13 A | 2026-11-01 A | RSZone 2Road 13Potable NetworkA76140-old | 100% | 2026-08-13 | 2026-11-02 |  |  | Contract Price Original Scope [10412.3 SAR]; Labour [88.9 h]; Buried Valves [5] | 10,412.33 | 10,412.33 | RD13 |
| RSZone 2Road 13Potable NetworkA76140 |  | Zone 2 - Road 13 - Potable Water Network - Buried Valves - Excavation | 1.5d | 2026-11-09 | 2026-11-10 | RSZone 2Road 13Potable NetworkA76140-old |  |  |  | 91.4d | 0d | Contract Price Original Scope [800.95 SAR]; Excavator Operator [15 h]; Dump Truck Operator [15 h]; Labour [6.84 h]; Buried Valves [5] | 800.95 |  | RD13 |
| RSZone 2Road 13Potable NetworkA76150 |  | Zone 2 - Road 13 - Potable Water Network - Buried Valves - Installation | 1.5d | 2026-11-10 | 2026-11-11 | RSZone 2Road 13Potable NetworkA76150-old, RSZone 2Road 13Potable NetworkA76140 |  |  |  | 91.4d | 0d | Contract Price Original Scope [10412.3 SAR]; Labour [88.9 h]; Buried Valves [5] | 10,412.33 |  | RD13 |
| RSZone 2Road 13Potable NetworkA76160 |  | Zone 2 - Road 13 - Potable Water Network - Buried Valves - Surface Box | 3d | 2026-11-12 | 2026-11-15 | RSZone 2Road 13Potable NetworkA76150, RSZone 2Road 13Potable NetworkA76140 |  |  |  | 91.4d | 0d | Labour; Buried Valves [10] |  |  | RD13 |
| RSZone 2Road 13Potable NetworkA76170 |  | Zone 2 - Road 13 - Potable Water Network - Buried Valves - Test | 2d | 2026-11-16 | 2026-11-17 | RSZone 2Road 13Potable NetworkA76160 |  |  |  | 91.4d | 0d | Contract Price Original Scope [6407.59 SAR]; Pump Operator [20 h]; Equipment Operator [20 h]; Labour [54.7 h]; Buried Valves [10] | 6,407.59 |  | RD13 |
| RSZone 2Road 13Potable NetworkA76180 |  | Zone 2 - Road 13 - Potable Water Network - Buried Valves - Backfilling | 2d | 2026-11-18 | 2026-11-19 | RSZone 2Road 13Potable NetworkA76170 |  |  |  | 91.4d | 91.2d | Contract Price Original Scope [3203.8 SAR]; Excavator Operator [20 h]; Compactor Operator [20 h]; Dump Truck Operator [20 h]; Water Truck Operator [20 h]; Labour [27.35 h]; Buried Valves [10] | 3,203.8 |  | RD13 |

| ID | WBS | Activity | Duration | Start | Finish | Predecessors | Complete | Planned start | Planned finish | Total float | Free float | Resources | Cost | Actual cost | MODON |
| --- | --- | --- | --- | --- | --- | --- | --- | --- | --- | --- | --- | --- | --- | --- | --- |
|  | 9 | **FIRE HYDRANT** |  | 2026-03-16 | 2026-11-16 |  |  |  |  |  |  |  |  |  |  |
| RSZone 2Road 13Potable NetworkA77440 |  | Zone 2 - Road 13 - Potable Water Network - FIRE HYDRANT - Excavation | 3d | 2026-03-16 A | 2026-03-18 A | RSZone 2Road 13Potable NetworkA75660 | 100% |  |  |  |  | Contract Price Original Scope [4161.85 SAR]; Excavator Operator [30 h]; Dump Truck Operator [30 h]; Labour [35.53 h]; Fire Hydrant [3] | 4,161.85 | 4,161.85 | RD13 |
| RSZone 2Road 13Potable NetworkA77450 |  | Zone 2 - Road 13 - Potable Water Network - FIRE HYDRANT - Buried Gate Valve Installation | 4d | 2026-03-19 A | 2026-03-23 A | RSZone 2Road 13Potable NetworkA77440 | 100% | 2026-03-19 | 2026-03-24 |  |  | Labour; Fire Hydrant [3] |  |  | RD13 |
| RSZone 2Road 13Potable NetworkA77460 |  | Zone 2 - Road 13 - Potable Water Network - FIRE HYDRANT - Fire Hydrant Installation | 2d | 2026-03-24 A | 2026-03-25 A | RSZone 2Road 13Potable NetworkA77450 | 100% |  |  |  |  | Contract Price Original Scope [30381.5 SAR]; Labour [259.38 h]; Fire Hydrant [3] | 30,381.48 | 30,381.48 | RD13 |
| RSZone 2Road 13Potable NetworkA77470 |  | Zone 2 - Road 13 - Potable Water Network - FIRE HYDRANT - Surface Box | 3d | 2026-11-09 | 2026-11-11 | RSZone 2Road 13Potable NetworkA77460 |  |  |  | 94.4d | 0d | Labour; Fire Hydrant [3] |  |  | RD13 |
| RSZone 2Road 13Potable NetworkA77480 |  | Zone 2 - Road 13 - Potable Water Network - FIRE HYDRANT - Test | 2d | 2026-11-12 | 2026-11-14 | RSZone 2Road 13Potable NetworkA77470 |  |  |  | 94.4d | 0d | Contract Price Original Scope [2913.29 SAR]; Pump Operator [20 h]; Equipment Operator [20 h]; Labour [24.87 h]; Fire Hydrant [3] | 2,913.29 |  | RD13 |
| RSZone 2Road 13Potable NetworkA77490 |  | Zone 2 - Road 13 - Potable Water Network - FIRE HYDRANT - Backfilling | 2d | 2026-11-15 | 2026-11-16 | RSZone 2Road 13Potable NetworkA77480 |  |  |  | 94.4d | 94.2d | Contract Price Original Scope [4161.85 SAR]; Excavator Operator [20 h]; Compactor Operator [20 h]; Dump Truck Operator [20 h]; Water Truck Operator [20 h]; Labour [35.53 h]; Fire Hydrant [3] | 4,161.85 |  | RD13 |
|  | 6 | **Thurst Blocks** |  | 2026-03-01 | 2026-03-02 |  |  |  |  |  |  |  |  |  |  |
| RSZone 2Road 13Potable NetworkA75800 |  | Zone 2 - Road 13 - Potable Water Network - Thurst Blocks - Thrust Block | 2d | 2026-03-01 A | 2026-03-02 A | RSZone 2Road 13Potable NetworkA77460 | 100% |  |  |  |  | Contract Price Original Scope [20240 SAR]; Crane Operator [23 h]; Pump Operator [23 h]; Equipment Operator [23 h]; Labour [172.8 h]; Thrust Blocks [6] | 20,240.04 | 20,240.04 | RD13 |
|  | 7 | **Sand Bedding** |  | 2026-08-09 | 2026-11-09 |  |  |  |  |  |  |  |  |  |  |
| RSZone 2Road 13Potable NetworkA75860-old |  | Zone 2 - Road 13 - Potable Water Network - Sand Bedding - Bedding (old) | 72d | 2026-08-09 A | 2026-11-01 A | RSZone 2Road 13Potable NetworkA75800 | 100% |  |  |  |  | Contract Price Original Scope [1634.99 SAR]; Compactor Operator [15.3 h]; Equipment Operator [15.3 h]; Water Truck Operator [15.3 h]; Labour [13.96 h]; Sand Bedding [87.97] | 1,634.99 | 1,634.99 | RD13 |
| RSZone 2Road 13Potable NetworkA75860 |  | Zone 2 - Road 13 - Potable Water Network - Sand Bedding - Bedding | 1d | 2026-11-09 | 2026-11-09 | RSZone 2Road 13Potable NetworkA75860-old |  |  |  | 100.4d | 100.2d | Contract Price Original Scope [502.25 SAR]; Compactor Operator [4.7 h]; Equipment Operator [4.7 h]; Water Truck Operator [4.7 h]; Labour [4.29 h]; Sand Bedding [27.02] | 502.25 |  | RD13 |
|  | 5 | **Lateral Irrigation Network** |  | 2025-12-14 | 2026-11-16 |  |  |  |  |  |  |  |  |  |  |
|  | 5 | **HDPE Pipes 125 MM** |  | 2025-12-14 | 2026-11-12 |  |  |  |  |  |  |  |  |  |  |
| RSZone 2Road 13Irrigation NetworkA69110 |  | Zone 2 - Road 13 - Lateral Irrigation Network - HDPE Pipes 125 MM - Excavation | 4d | 2025-12-14 A | 2025-12-17 A | RSZone 2Road 12Irrigation NetworkA70750 | 100% |  |  |  |  | Contract Price Original Scope [3859.02 SAR]; Excavator Operator [30 h]; Dump Truck Operator [30 h]; Labour [32.95 h]; HDPE Pipes 125 MM [278] | 3,859.02 | 3,859.02 | RD13 |
| RSZone 2Road 13Irrigation NetworkA69120 |  | Zone 2 - Road 13 - Lateral Irrigation Network - HDPE Pipes 125 MM - Pipe Installation | 5d | 2025-12-18 A | 2025-12-23 A | RSZone 2Road 13Irrigation NetworkA69110 | 100% | 2025-12-18 | 2025-12-24 |  |  | Contract Price Original Scope [27013.2 SAR]; Excavator Operator [40 h]; Crane Operator [40 h]; Equipment Operator [40 h]; Labour [230.62 h]; HDPE Pipes 125 MM [278] | 27,013.17 | 27,013.17 | RD13 |
| RSZone 2Road 13Irrigation NetworkA69130 |  | Zone 2 - Road 13 - Lateral Irrigation Network - HDPE Pipes 125 MM - Test | 2d | 2026-11-09 | 2026-11-10 | RSZone 2Road 13Irrigation NetworkA69120 |  |  |  | 97.4d | 0d | Contract Price Original Scope [3859.02 SAR]; Pump Operator [20 h]; Equipment Operator [20 h]; Labour [32.95 h]; HDPE Pipes 125 MM [278] | 3,859.02 |  | RD13 |
| RSZone 2Road 13Irrigation NetworkA69140 |  | Zone 2 - Road 13 - Lateral Irrigation Network - HDPE Pipes 125 MM - Backfilling | 2d | 2026-11-11 | 2026-11-12 | RSZone 2Road 13Irrigation NetworkA69130 |  |  |  | 97.4d | 96.76d | Contract Price Original Scope [3859.02 SAR]; Excavator Operator [20 h]; Compactor Operator [20 h]; Dump Truck Operator [20 h]; Water Truck Operator [20 h]; Labour [32.95 h]; HDPE Pipes 125 MM [278] | 3,859.02 |  | RD13 |
|  | 1 | **HDPE Fitting** |  | 2026-07-22 | 2026-11-12 |  |  |  |  |  |  |  |  |  |  |
|  | 1 | **Elbows for Pipe 125 MM** |  | 2026-07-23 | 2026-11-10 |  |  |  |  |  |  |  |  |  |  |
| RSZone 2Road 13Irrigation NetworkA69310- |  | Zone 2 - Road 13 - Lateral Irrigation Network - Elbows for Pipe 125 MM - Installation (old) | 86d | 2026-07-23 A | 2026-11-01 A | RSZone 2Road 13Irrigation NetworkA69120 | 100% | 2026-07-23 | 2026-11-02 |  |  | Contract Price Original Scope [3898.37 SAR]; Labour [33.28 h]; Fittings - Elbows (all sizes) [3] | 3,898.37 | 3,898.37 | RD13 |
| RSZone 2Road 13Irrigation NetworkA69310- |  | Zone 2 - Road 13 - Lateral Irrigation Network - Elbows for Pipe 125 MM - Installation (old) | 1.5d | 2026-11-09 | 2026-11-10 | RSZone 2Road 13Irrigation NetworkA69310- |  |  |  | 97.8d | 0d | Contract Price Original Scope [3898.37 SAR]; Labour [33.28 h]; Fittings - Elbows (all sizes) [3] | 3,898.37 |  | RD13 |
|  | 3 | **Tees for Pipe 125 MM** |  | 2026-07-22 | 2026-11-12 |  |  |  |  |  |  |  |  |  |  |
| RSZone 2Road 13Irrigation NetworkA69410- |  | Zone 2 - Road 13 - Lateral Irrigation Network - Tees for Pipe 125 MM - Installation (old) | 87d | 2026-07-22 A | 2026-11-01 A | RSZone 2Road 13Irrigation NetworkA69310- | 100% |  |  |  |  | Contract Price Original Scope [4608.18 SAR]; Labour [39.34 h]; Fittings - Tees (all sizes) [3] | 4,608.18 | 4,608.18 | RD13 |
| RSZone 2Road 13Irrigation NetworkA69410- |  | Zone 2 - Road 13 - Lateral Irrigation Network - Tees for Pipe 125 MM - Installation (old) | 2.1d | 2026-11-10 | 2026-11-12 | RSZone 2Road 13Irrigation NetworkA69410-, RSZone 2Road 13Irrigation NetworkA69310- |  |  |  | 97.8d | 97.16d | Contract Price Original Scope [10752.4 SAR]; Labour [91.8 h]; Fittings - Tees (all sizes) [7] | 10,752.42 |  | RD13 |

| ID | WBS | Activity | Duration | Start | Finish | Predecessors | Complete | Total float | Free float | Resources | Cost | Actual cost | MODON |
| --- | --- | --- | --- | --- | --- | --- | --- | --- | --- | --- | --- | --- | --- |
|  | 2 | **Valves** |  | 2026-01-04 | 2026-11-16 |  |  |  |  |  |  |  |  |
|  | 1 | **Buried Valves** |  | 2026-01-04 | 2026-11-16 |  |  |  |  |  |  |  |  |
| RSZone 2Road 13Irrigation NetworkA70760 |  | Zone 2 - Road 13 - Lateral Irrigation Network - Buried Valves - Excavation | 3d | 2026-01-04 A | 2026-01-06 A | RSZone 2Road 13Irrigation NetworkA69120 | 100% |  |  | Contract Price Original Scope [538.05 SAR]; Excavator Operator [30 h]; Dump Truck Operator [30 h]; Labour [4.59 h]; Buried Valves [8] | 538.05 | 538.05 | RD13 |
| RSZone 2Road 13Irrigation NetworkA70770 |  | Zone 2 - Road 13 - Lateral Irrigation Network - Buried Valves - Installation | 1.9d | 2026-01-07 A | 2026-01-08 A | RSZone 2Road 13Irrigation NetworkA70760 | 100% |  |  | Contract Price Original Scope [6994.69 SAR]; Labour [59.72 h]; Buried Valves [8] | 6,994.69 | 6,994.69 | RD13 |
| RSZone 2Road 13Irrigation NetworkA70780 |  | Zone 2 - Road 13 - Lateral Irrigation Network - Buried Valves - Surface Box | 3d | 2026-11-09 | 2026-11-11 | RSZone 2Road 13Irrigation NetworkA70770 |  | 82.4d | 0d | Labour; Buried Valves [8] |  |  | RD13 |
| RSZone 2Road 13Irrigation NetworkA70790 |  | Zone 2 - Road 13 - Lateral Irrigation Network - Buried Valves - Test | 2d | 2026-11-12 | 2026-11-14 | RSZone 2Road 13Irrigation NetworkA70780 |  | 82.4d | 0d | Contract Price Original Scope [2152.21 SAR]; Pump Operator [20 h]; Equipment Operator [20 h]; Labour [18.37 h]; Buried Valves [8] | 2,152.21 |  | RD13 |
| RSZone 2Road 13Irrigation NetworkA70800 |  | Zone 2 - Road 13 - Lateral Irrigation Network - Buried Valves - Backfilling | 2d | 2026-11-15 | 2026-11-16 | RSZone 2Road 13Irrigation NetworkA70790 |  | 82.4d | 0d | Contract Price Original Scope [1076.11 SAR]; Excavator Operator [20 h]; Compactor Operator [20 h]; Dump Truck Operator [20 h]; Water Truck Operator [20 h]; Labour [9.19 h]; Buried Valves [8] | 1,076.11 |  | RD13 |
|  | 4 | **Bedding** |  | 2026-01-04 | 2026-01-06 |  |  |  |  |  |  |  |  |
| RSZone 2Road 13Irrigation NetworkA71330 |  | Zone 2 - Road 13 - Lateral Irrigation Network - Bedding - Bedding | 3d | 2026-01-04 A | 2026-01-06 A | RSZone 2Road 13Irrigation NetworkA70770 | 100% |  |  | Contract Price Original Scope [7159.32 SAR]; Compactor Operator [20 h]; Equipment Operator [20 h]; Water Truck Operator [20 h]; Labour [61.12 h]; Bedding [278] | 7,159.32 | 7,159.32 | RD13 |
|  | 6 | **Thrust Block** |  | 2026-07-28 | 2026-11-09 |  |  |  |  |  |  |  |  |
| RSZone 2Road 13Irrigation NetworkA71340- |  | Zone 2 - Road 13 - Lateral Irrigation Network - Thrust Block - Thrust Block (old) | 82d | 2026-07-28 A | 2026-11-01 A | RSZone 2Road 13Irrigation NetworkA71330 | 100% |  |  | Contract Price Original Scope [6130.56 SAR]; Crane Operator [4.5 h]; Pump Operator [4.5 h]; Equipment Operator [4.5 h]; Labour [52.34 h]; Thrust Blocks [6] | 6,130.56 | 6,130.56 | RD13 |
| RSZone 2Road 13Irrigation NetworkA71340- |  | Zone 2 - Road 13 - Lateral Irrigation Network - Thrust Block - Thrust Block (old) | 1d | 2026-11-09 | 2026-11-09 | RSZone 2Road 13Irrigation NetworkA71340- |  | 100.4d | 99.76d | Contract Price Original Scope [10217.6 SAR]; Crane Operator [7.5 h]; Pump Operator [7.5 h]; Equipment Operator [7.5 h]; Labour [87.23 h]; Thrust Blocks [10] | 10,217.6 |  | RD13 |
|  | 3 | **Telecom** |  | 2026-08-23 | 2026-11-24 |  |  |  |  |  |  |  |  |
|  | 1 | **Telecom Pipe** |  | 2026-08-23 | 2026-11-15 |  |  |  |  |  |  |  |  |
| RSZone 2Road 13Telecom NetworkA78380-old |  | Zone 2 - Road 13 - Telecom Network - Telecom Pipe - Excavation (old) | 60d | 2026-08-23 A | 2026-11-01 A | RSZone 2Road 12Telecom NetworkA95860-old | 100% |  |  | Contract Price Original Scope [18902.1 SAR]; Excavator Operator [26.85 h]; Dump Truck Operator [26.85 h]; Labour [161.38 h]; Telecom Pipe [877.1] | 18,902.09 | 18,902.09 | RD13 |
| RSZone 2Road 13Telecom NetworkA78390-old |  | Zone 2 - Road 13 - Telecom Network - Telecom Pipe - Concrete Pouring (old) | 58d | 2026-08-25 A | 2026-11-01 A | RSZone 2Road 13Telecom NetworkA78380-old | 100% |  |  | Contract Price Original Scope [132350 SAR]; Crane Operator [12.53 h]; Pump Operator [12.53 h]; Equipment Operator [12.53 h]; Labour [1129.93 h]; Telecom Pipe [877.33] | 132,349.82 | 132,349.82 | RD13 |
| RSZone 2Road 13Telecom NetworkA78410-old |  | Zone 2 - Road 13 - Telecom Network - Telecom Pipe - Backfilling (old) | 57d | 2026-08-26 A | 2026-11-01 A | RSZone 2Road 13Telecom NetworkA78390-old | 100% |  |  | Contract Price Original Scope [18902.1 SAR]; Excavator Operator [17.9 h]; Compactor Operator [17.9 h]; Dump Truck Operator [17.9 h]; Water Truck Operator [17.9 h]; Labour [161.38 h]; Telecom Pipe [877.1] | 18,902.09 | 18,902.09 | RD13 |
| RSZone 2Road 13Telecom NetworkA78380 |  | Zone 2 - Road 13 - Telecom Network - Telecom Pipe - Excavation | 1d | 2026-11-10 | 2026-11-10 | RSZone 2Road 13Telecom NetworkA78380-old, RSZone 2Road 12Telecom NetworkA95860 |  | 100.4d | 0d | Contract Price Original Scope [2217.56 SAR]; Excavator Operator [3.15 h]; Dump Truck Operator [3.15 h]; Labour [18.93 h]; Telecom Pipe [102.9] | 2,217.56 |  | RD13 |
| RSZone 2Road 13Telecom NetworkA78390 |  | Zone 2 - Road 13 - Telecom Network - Telecom Pipe - Concrete Pouring | 1d | 2026-11-11 | 2026-11-11 | RSZone 2Road 13Telecom NetworkA78390-old, RSZone 2Road 13Telecom NetworkA78380 |  | 100.4d | 0d | Contract Price Original Scope [15487.7 SAR]; Crane Operator [1.47 h]; Pump Operator [1.47 h]; Equipment Operator [1.47 h]; Labour [132.23 h]; Telecom Pipe [102.67] | 15,487.74 |  | RD13 |
| RSZone 2Road 13Telecom NetworkA78410 |  | Zone 2 - Road 13 - Telecom Network - Telecom Pipe - Backfilling | 1d | 2026-11-12 | 2026-11-12 | RSZone 2Road 13Telecom NetworkA78410-old, RSZone 2Road 13Telecom NetworkA78390 |  | 100.4d | 0d | Contract Price Original Scope [2217.56 SAR]; Excavator Operator [2.1 h]; Compactor Operator [2.1 h]; Dump Truck Operator [2.1 h]; Water Truck Operator [2.1 h]; Labour [18.93 h]; Telecom Pipe [102.9] | 2,217.56 |  | RD13 |
| RSZone 2Road 13Telecom NetworkA78400 |  | Zone 2 - Road 13 - Telecom Network - Telecom Pipe - Test | 2d | 2026-11-14 | 2026-11-15 | RSZone 2Road 13Telecom NetworkA78410, RSZone 2Road 13Telecom NetworkA78390 |  | 100.4d | 100d | Contract Price Original Scope [21119.7 SAR]; Pump Operator [20 h]; Equipment Operator [20 h]; Labour [180.31 h]; Telecom Pipe [980] | 21,119.65 |  | RD13 |
|  | 2 | **TELECOM MANHOLE** |  | 2026-08-24 | 2026-11-24 |  |  |  |  |  |  |  |  |
| RSZone 2Road 13Telecom NetworkA78370-old |  | Zone 2 - Road 13 - Telecom Network - TELECOM MANHOLE - Manhole Installation (old) | 59d | 2026-08-24 A | 2026-11-01 A | RSZone 2Road 11Telecom NetworkA78190-old | 100% |  |  | Contract Price Original Scope [114061 SAR]; Crane Operator [12.35 h]; Boom Truck Operator [12.35 h]; Equipment Operator [12.35 h]; Labour [973.8 h]; Telecom Manhole [7.6] | 114,061.33 | 114,061.33 | RD13 |
| RSZone 2Road 13Telecom NetworkA78370 |  | Zone 2 - Road 13 - Telecom Network - TELECOM MANHOLE - Manhole Installation | 1d | 2026-11-24 | 2026-11-24 | RSZone 2Road 13Telecom NetworkA78370-old, RSZone 2Road 11Telecom NetworkA78190 |  | 76.4d | 0d | Contract Price Original Scope [6003.23 SAR]; Crane Operator [0.65 h]; Boom Truck Operator [0.65 h]; Equipment Operator [0.65 h]; Labour [51.25 h]; Telecom Manhole [0.4] | 6,003.23 |  | RD13 |

| ID | WBS | Activity | Duration | Start | Finish | Predecessors | Complete | Total float | Free float | Resources | Cost | Actual cost | MODON |
| --- | --- | --- | --- | --- | --- | --- | --- | --- | --- | --- | --- | --- | --- |
|  | 15 | **Road 14** |  | 2026-02-22 | 2027-03-08 |  |  |  |  |  |  |  |  |
|  | 1 | **Storm Network** |  | 2027-03-04 | 2027-03-08 |  |  |  |  |  |  |  |  |
|  | 8 | **Manhole** |  | 2027-03-04 | 2027-03-08 |  |  |  |  |  |  |  |  |
| RSZone 2Road 14Storm NetworkA92770 |  | Zone 2 - Road 14 - Storm Network - Manhole - COVER INSTALLATION | 2d | 2027-03-04 | 2027-03-08 | RSZone 1Road 32Storm NetworkA94920 |  | 14.4d | 0d | Contract Price Original Scope [38889.9 SAR]; Crane Operator [7 h]; Boom Truck Operator [7 h]; Equipment Operator [7 h]; Labour [332.02 h]; Manholes GRP (new + DI cover only) [14] | 38,889.95 |  | RD14 |
|  | 8 | **Potable Water Network** |  | 2026-02-22 | 2027-01-06 |  |  |  |  |  |  |  |  |
|  | 3 | **Potable Pipes 250 MM** |  | 2026-08-03 | 2026-11-15 |  |  |  |  |  |  |  |  |
| RSZone 2Road 14Potable NetworkA75600-old |  | Zone 2 - Road 14 - Potable Water Network - Potable Pipes 250 MM - Excavation (old) | 77d | 2026-08-03 A | 2026-11-01 A | RSZone 2Road 13Potable NetworkA75800 | 100% |  |  | Contract Price Original Scope [245.88 SAR]; Excavator Operator [29.97 h]; Dump Truck Operator [29.97 h]; Labour [2.1 h]; Potable Pipes 250 MM [7.99] | 245.88 | 245.88 | RD14 |
| RSZone 2Road 14Potable NetworkA75610-old |  | Zone 2 - Road 14 - Potable Water Network - Potable Pipes 250 MM - Installation (old) | 76d | 2026-08-04 A | 2026-11-01 A | RSZone 2Road 14Potable NetworkA75600-old | 100% |  |  | Contract Price Original Scope [1721.17 SAR]; Labour [14.69 h]; Potable Pipes 250 MM [7.99] | 1,721.17 | 1,721.17 | RD14 |
| RSZone 2Road 14Potable NetworkA75600 |  | Zone 2 - Road 14 - Potable Water Network - Potable Pipes 250 MM - Excavation | 1d | 2026-11-09 | 2026-11-09 | RSZone 2Road 14Potable NetworkA75600-old |  | 95.4d | 0d | Contract Price Original Scope [0.27 SAR]; Excavator Operator [0.03 h]; Dump Truck Operator [0.03 h]; Labour [0 h]; Potable Pipes 250 MM [0.01] | 0.27 |  | RD14 |
| RSZone 2Road 14Potable NetworkA75610 |  | Zone 2 - Road 14 - Potable Water Network - Potable Pipes 250 MM - Installation | 1d | 2026-11-10 | 2026-11-10 | RSZone 2Road 14Potable NetworkA75610-old, RSZone 2Road 14Potable NetworkA75600 |  | 95.4d | 0d | Contract Price Original Scope [1.91 SAR]; Labour [0.02 h]; Potable Pipes 250 MM [0.01] | 1.91 |  | RD14 |
| RSZone 2Road 14Potable NetworkA75620 |  | Zone 2 - Road 14 - Potable Water Network - Potable Pipes 250 MM - Test | 2d | 2026-11-11 | 2026-11-12 | RSZone 2Road 14Potable NetworkA75610, RSZone 2Road 14Potable NetworkA75600 |  | 95.4d | 0d | Contract Price Original Scope [246.16 SAR]; Pump Operator [20 h]; Equipment Operator [20 h]; Labour [2.1 h]; Potable Pipes 250 MM [8] | 246.16 |  | RD14 |
| RSZone 2Road 14Potable NetworkA75630 |  | Zone 2 - Road 14 - Potable Water Network - Potable Pipes 250 MM - Backfilling | 2d | 2026-11-14 | 2026-11-15 | RSZone 2Road 14Potable NetworkA75620 |  | 95.4d | 95.2d | Contract Price Original Scope [246.16 SAR]; Excavator Operator [20 h]; Compactor Operator [20 h]; Dump Truck Operator [20 h]; Water Truck Operator [20 h]; Labour [2.1 h]; Potable Pipes 250 MM [8] | 246.16 |  | RD14 |
|  | 2 | **Elbows** |  | 2026-02-22 | 2026-02-23 |  |  |  |  |  |  |  |  |
| RSZone 2Road 14Potable NetworkA75670 |  | Zone 2 - Road 14 - Potable Water Network - Elbows - Installation | 2d | 2026-02-22 A | 2026-02-23 A | RSZone 2Road 13Potable NetworkA75800 | 100% |  |  | Contract Price Original Scope [1876.24 SAR]; Labour [16.02 h]; Fittings - Elbows (all sizes) [1] | 1,876.24 | 1,876.24 | RD14 |
|  | 5 | **End Cap** |  | 2027-01-03 | 2027-01-06 |  |  |  |  |  |  |  |  |
| RSZone 2Road 14Potable NetworkA75740 |  | Zone 2 - Road 14 - Potable Water Network - End Cap - Installation | 3d | 2027-01-03 | 2027-01-06 | RSZone 2Road 13Potable NetworkA75730 |  | 0.2d | 0d | Contract Price Original Scope [730.98 SAR]; Labour [6.24 h]; Fittings - End Caps (all sizes) [1] | 730.98 |  | RD14 |
|  | 6 | **Buried Valves** |  | 2026-08-09 | 2026-11-19 |  |  |  |  |  |  |  |  |
| RSZone 2Road 14Potable NetworkA76190-old |  | Zone 2 - Road 14 - Potable Water Network - Buried Valves - Excavation (old) | 72d | 2026-08-09 A | 2026-11-01 A | RSZone 2Road 14Potable NetworkA75670 | 100% |  |  | Contract Price Original Scope [640.76 SAR]; Excavator Operator [15 h]; Dump Truck Operator [15 h]; Labour [5.47 h]; Buried Valves [4] | 640.76 | 640.76 | RD14 |
| RSZone 2Road 14Potable NetworkA76200-old |  | Zone 2 - Road 14 - Potable Water Network - Buried Valves - Installation (old) | 71d | 2026-08-10 A | 2026-11-01 A | RSZone 2Road 14Potable NetworkA76190-old | 100% |  |  | Contract Price Original Scope [8329.87 SAR]; Labour [71.12 h]; Buried Valves [4] | 8,329.87 | 8,329.87 | RD14 |
| RSZone 2Road 14Potable NetworkA76190 |  | Zone 2 - Road 14 - Potable Water Network - Buried Valves - Excavation | 1.5d | 2026-11-09 | 2026-11-10 | RSZone 2Road 14Potable NetworkA76190-old |  | 91.4d | 0d | Contract Price Original Scope [640.76 SAR]; Excavator Operator [15 h]; Dump Truck Operator [15 h]; Labour [5.47 h]; Buried Valves [4] | 640.76 |  | RD14 |
| RSZone 2Road 14Potable NetworkA76200 |  | Zone 2 - Road 14 - Potable Water Network - Buried Valves - Installation | 1.5d | 2026-11-10 | 2026-11-11 | RSZone 2Road 14Potable NetworkA76200-old, RSZone 2Road 14Potable NetworkA76190 |  | 91.4d | 0d | Contract Price Original Scope [8329.87 SAR]; Labour [71.12 h]; Buried Valves [4] | 8,329.87 |  | RD14 |
| RSZone 2Road 14Potable NetworkA76210 |  | Zone 2 - Road 14 - Potable Water Network - Buried Valves - Surface Box | 3d | 2026-11-12 | 2026-11-15 | RSZone 2Road 14Potable NetworkA76200, RSZone 2Road 14Potable NetworkA76190 |  | 91.4d | 0d | Labour; Buried Valves [8] |  |  | RD14 |
| RSZone 2Road 14Potable NetworkA76220 |  | Zone 2 - Road 14 - Potable Water Network - Buried Valves - Test | 2d | 2026-11-16 | 2026-11-17 | RSZone 2Road 14Potable NetworkA76210 |  | 91.4d | 0d | Contract Price Original Scope [5126.07 SAR]; Pump Operator [20 h]; Equipment Operator [20 h]; Labour [43.76 h]; Buried Valves [8] | 5,126.07 |  | RD14 |
| RSZone 2Road 14Potable NetworkA76230 |  | Zone 2 - Road 14 - Potable Water Network - Buried Valves - Backfilling | 2d | 2026-11-18 | 2026-11-19 | RSZone 2Road 14Potable NetworkA76220 |  | 91.4d | 91.2d | Contract Price Original Scope [2563.04 SAR]; Excavator Operator [20 h]; Compactor Operator [20 h]; Dump Truck Operator [20 h]; Water Truck Operator [20 h]; Labour [21.88 h]; Buried Valves [8] | 2,563.04 |  | RD14 |

| ID | WBS | Activity | Duration | Start | Finish | Predecessors | Complete | Planned start | Planned finish | Total float | Free float | Resources | Cost | Actual cost | MODON |
| --- | --- | --- | --- | --- | --- | --- | --- | --- | --- | --- | --- | --- | --- | --- | --- |
|  | 7 | **FIRE HYDRANT** |  | 2026-08-17 | 2026-11-19 |  |  |  |  |  |  |  |  |  |  |
| RSZone 2Road 14Potable NetworkA77500-old |  | Zone 2 - Road 14 - Potable Water Network - FIRE HYDRANT - Excavation (old) | 65d | 2026-08-17 A | 2026-11-01 A | RSZone 2Road 14Potable NetworkA75670 | 100% |  |  |  |  | Contract Price Original Scope [6936.41 SAR]; Excavator Operator [25 h]; Dump Truck Operator [25 h]; Labour [59.22 h]; Fire Hydrant [5] | 6,936.41 | 6,936.41 | RD14 |
| RSZone 2Road 14Potable NetworkA77510-old |  | Zone 2 - Road 14 - Potable Water Network - FIRE HYDRANT - Buried Gate Valve Installation (old) | 64d | 2026-08-18 A | 2026-11-01 A | RSZone 2Road 14Potable NetworkA77500-old | 100% |  |  |  |  | Labour; Fire Hydrant [5] |  |  | RD14 |
| RSZone 2Road 14Potable NetworkA77520-old |  | Zone 2 - Road 14 - Potable Water Network - FIRE HYDRANT - Fire Hydrant Installation (old) | 62d | 2026-08-20 A | 2026-11-01 A | RSZone 2Road 14Potable NetworkA77510-old | 100% | 2026-08-20 | 2026-11-02 |  |  | Contract Price Original Scope [50635.8 SAR]; Labour [432.3 h]; Fire Hydrant [5] | 50,635.79 | 50,635.79 | RD14 |
| RSZone 2Road 14Potable NetworkA77500 |  | Zone 2 - Road 14 - Potable Water Network - FIRE HYDRANT - Excavation | 1d | 2026-11-09 | 2026-11-09 | RSZone 2Road 14Potable NetworkA77500-old |  |  |  | 91.4d | 0d | Contract Price Original Scope [1387.28 SAR]; Excavator Operator [5 h]; Dump Truck Operator [5 h]; Labour [11.84 h]; Fire Hydrant [1] | 1,387.28 |  | RD14 |
| RSZone 2Road 14Potable NetworkA77510 |  | Zone 2 - Road 14 - Potable Water Network - FIRE HYDRANT - Buried Gate Valve Installation | 1d | 2026-11-10 | 2026-11-10 | RSZone 2Road 14Potable NetworkA77510-old, RSZone 2Road 14Potable NetworkA77500 |  |  |  | 91.4d | 0d | Labour; Fire Hydrant [1] |  |  | RD14 |
| RSZone 2Road 14Potable NetworkA77520 |  | Zone 2 - Road 14 - Potable Water Network - FIRE HYDRANT - Fire Hydrant Installation | 1d | 2026-11-11 | 2026-11-11 | RSZone 2Road 14Potable NetworkA77520-old, RSZone 2Road 14Potable NetworkA77510 |  |  |  | 91.4d | 0d | Contract Price Original Scope [10127.2 SAR]; Labour [86.46 h]; Fire Hydrant [1] | 10,127.16 |  | RD14 |
| RSZone 2Road 14Potable NetworkA77530 |  | Zone 2 - Road 14 - Potable Water Network - FIRE HYDRANT - Surface Box | 3d | 2026-11-12 | 2026-11-15 | RSZone 2Road 14Potable NetworkA77520, RSZone 2Road 14Potable NetworkA77500, RSZone 2Road 14Potable NetworkA77510 |  |  |  | 91.4d | 0d | Labour; Fire Hydrant [6] |  |  | RD14 |
| RSZone 2Road 14Potable NetworkA77540 |  | Zone 2 - Road 14 - Potable Water Network - FIRE HYDRANT - Test | 2d | 2026-11-16 | 2026-11-17 | RSZone 2Road 14Potable NetworkA77530 |  |  |  | 91.4d | 0d | Contract Price Original Scope [5826.58 SAR]; Pump Operator [20 h]; Equipment Operator [20 h]; Labour [49.74 h]; Fire Hydrant [6] | 5,826.58 |  | RD14 |
| RSZone 2Road 14Potable NetworkA77550 |  | Zone 2 - Road 14 - Potable Water Network - FIRE HYDRANT - Backfilling | 2d | 2026-11-18 | 2026-11-19 | RSZone 2Road 14Potable NetworkA77540 |  |  |  | 91.4d | 91.2d | Contract Price Original Scope [8323.69 SAR]; Excavator Operator [20 h]; Compactor Operator [20 h]; Dump Truck Operator [20 h]; Water Truck Operator [20 h]; Labour [71.06 h]; Fire Hydrant [6] | 8,323.69 |  | RD14 |
|  | 1 | **Thurst Blocks** |  | 2026-08-06 | 2026-11-10 |  |  |  |  |  |  |  |  |  |  |
| RSZone 2Road 14Potable NetworkA75810-old |  | Zone 2 - Road 14 - Potable Water Network - Thurst Blocks - Thrust Block (old) | 74d | 2026-08-06 A | 2026-11-01 A | RSZone 2Road 14Potable NetworkA75670 | 100% | 2026-08-06 | 2026-11-02 |  |  | Contract Price Original Scope [13493.4 SAR]; Crane Operator [4.4 h]; Pump Operator [4.4 h]; Equipment Operator [4.4 h]; Labour [115.2 h]; Thrust Blocks [4] | 13,493.36 | 13,493.36 | RD14 |
| RSZone 2Road 14Potable NetworkA75810 |  | Zone 2 - Road 14 - Potable Water Network - Thurst Blocks - Thrust Block | 1.76d | 2026-11-09 | 2026-11-10 | RSZone 2Road 14Potable NetworkA75810-old |  |  |  | 99.64d | 99.44d | Contract Price Original Scope [53973.4 SAR]; Crane Operator [17.6 h]; Pump Operator [17.6 h]; Equipment Operator [17.6 h]; Labour [460.8 h]; Thrust Blocks [16] | 53,973.45 |  | RD14 |
|  | 4 | **Sand Bedding** |  | 2026-03-05 | 2026-03-09 |  |  |  |  |  |  |  |  |  |  |
| RSZone 2Road 14Potable NetworkA75870 |  | Zone 2 - Road 14 - Potable Water Network - Sand Bedding - Bedding | 4d | 2026-03-05 A | 2026-03-09 A | RSZone 2Road 14Potable NetworkA75670 | 100% | 2026-03-05 | 2026-03-10 |  |  | Contract Price Original Scope [148.68 SAR]; Compactor Operator [20 h]; Equipment Operator [20 h]; Water Truck Operator [20 h]; Labour [1.27 h]; Sand Bedding [8] | 148.68 | 148.68 | RD14 |
|  | 2 | **Lateral Irrigation Network** |  | 2026-09-06 | 2026-11-23 |  |  |  |  |  |  |  |  |  |  |
|  | 5 | **HDPE Fitting** |  | 2026-11-17 | 2026-11-23 |  |  |  |  |  |  |  |  |  |  |
|  | 1 | **Elbows for Pipe 125 MM** |  | 2026-11-17 | 2026-11-19 |  |  |  |  |  |  |  |  |  |  |
| RSZone 2Road 14Irrigation NetworkA92840 |  | Zone 2 - Road 14 - Lateral Irrigation Network - Elbows for Pipe 125 MM - Installation | 3d | 2026-11-17 | 2026-11-19 | RSZone 2Road 13Irrigation NetworkA70800 |  |  |  | 82.4d | 0d | Contract Price Original Scope [2598.92 SAR]; Labour [22.19 h]; Fittings - Elbows (all sizes) [2] | 2,598.92 |  | RD14 |
|  | 3 | **Tees for Pipe 125 MM** |  | 2026-11-21 | 2026-11-23 |  |  |  |  |  |  |  |  |  |  |
| RSZone 2Road 14Irrigation NetworkA92850 |  | Zone 2 - Road 14 - Lateral Irrigation Network - Tees for Pipe 125 MM - Installation | 3d | 2026-11-21 | 2026-11-23 | RSZone 2Road 14Irrigation NetworkA92840 |  |  |  | 82.4d | 0d | Contract Price Original Scope [4608.18 SAR]; Labour [39.34 h]; Fittings - Tees (all sizes) [3] | 4,608.18 |  | RD14 |
|  | 3 | **Buried Valves** |  | 2026-09-06 | 2026-11-16 |  |  |  |  |  |  |  |  |  |  |
| RSZone 2Road 14Irrigation NetworkA95090 |  | Zone 2 - Road 14 - Lateral Irrigation Network - Buried Valves - Excavation | 4d | 2026-09-06 A | 2026-09-09 A | RSZone 2Road 13Irrigation NetworkA71330 | 100% |  |  |  |  | Contract Price Original Scope [538.05 SAR]; Excavator Operator [30 h]; Dump Truck Operator [30 h]; Labour [4.59 h]; Buried Valves [8] | 538.05 | 538.05 | RD14 |
| RSZone 2Road 14Irrigation NetworkA95100 |  | Zone 2 - Road 14 - Lateral Irrigation Network - Buried Valves - Installation | 4d | 2026-09-10 A | 2026-09-14 A | RSZone 2Road 14Irrigation NetworkA95090, RSZone 2Road 14Irrigation NetworkA95090 FF | 100% | 2026-09-10 | 2026-09-15 |  |  | Contract Price Original Scope [6994.69 SAR]; Labour [59.72 h]; Buried Valves [8] | 6,994.69 | 6,994.69 | RD14 |
| RSZone 2Road 14Irrigation NetworkA95110 |  | Zone 2 - Road 14 - Lateral Irrigation Network - Buried Valves - Surface Box | 3d | 2026-11-09 | 2026-11-11 | RSZone 2Road 14Irrigation NetworkA95100 |  |  |  | 93.2d | 0d | Labour; Buried Valves [8] |  |  | RD14 |
| RSZone 2Road 14Irrigation NetworkA95120 |  | Zone 2 - Road 14 - Lateral Irrigation Network - Buried Valves - Test | 2d | 2026-11-12 | 2026-11-14 | RSZone 2Road 14Irrigation NetworkA95110 |  |  |  | 93.2d | 0d | Contract Price Original Scope [2152.21 SAR]; Pump Operator [20 h]; Equipment Operator [20 h]; Labour [18.37 h]; Buried Valves [8] | 2,152.21 |  | RD14 |
| RSZone 2Road 14Irrigation NetworkA95130 |  | Zone 2 - Road 14 - Lateral Irrigation Network - Buried Valves - Backfilling | 2d | 2026-11-15 | 2026-11-16 | RSZone 2Road 14Irrigation NetworkA95120 |  |  |  | 93.2d | 0d | Contract Price Original Scope [1076.11 SAR]; Excavator Operator [20 h]; Compactor Operator [20 h]; Dump Truck Operator [20 h]; Water Truck Operator [20 h]; Labour [9.19 h]; Buried Valves [8] | 1,076.11 |  | RD14 |

| ID | WBS | Activity | Duration | Start | Finish | Predecessors | Complete | Planned start | Planned finish | Total float | Free float | Resources | Cost | Actual cost | MODON |
| --- | --- | --- | --- | --- | --- | --- | --- | --- | --- | --- | --- | --- | --- | --- | --- |
|  | 6 | **Thrust Block** |  | 2026-11-17 | 2026-11-18 |  |  |  |  |  |  |  |  |  |  |
| RSZone 2Road 14Irrigation NetworkA93030 |  | Zone 2 - Road 14 - Lateral Irrigation Network - Thrust Block - Thrust Block | 1.2d | 2026-11-17 | 2026-11-18 | RSZone 2Road 14Irrigation NetworkA95130 |  |  |  | 93.2d | 92.56d | Contract Price Original Scope [5108.8 SAR]; Crane Operator [12 h]; Pump Operator [12 h]; Equipment Operator [12 h]; Labour [43.62 h]; Thrust Blocks [5] | 5,108.8 |  | RD14 |
|  | 3 | **Telecom** |  | 2026-08-25 | 2026-11-25 |  |  |  |  |  |  |  |  |  |  |
|  | 1 | **Telecom Pipe** |  | 2026-08-25 | 2026-11-05 |  |  |  |  |  |  |  |  |  |  |
| RSZone 2Road 14Telecom NetworkA78470-old |  | Zone 2 - Road 14 - Telecom Network - Telecom Pipe - Excavation (old) | 58d | 2026-08-25 A | 2026-11-01 A | RSZone 2Road 14Irrigation NetworkA95090 | 100% |  |  |  |  | Contract Price Original Scope [20214.5 SAR]; Excavator Operator [26.8 h]; Dump Truck Operator [26.8 h]; Labour [172.58 h]; Telecom Pipe [938] | 20,214.52 | 20,214.52 | RD14 |
| RSZone 2Road 14Telecom NetworkA78480-old |  | Zone 2 - Road 14 - Telecom Network - Telecom Pipe - Concrete Pouring (old) | 57d | 2026-08-26 A | 2026-11-01 A | RSZone 2Road 14Telecom NetworkA78470-old | 100% |  |  |  |  | Contract Price Original Scope [141426 SAR]; Crane Operator [12.5 h]; Pump Operator [12.5 h]; Equipment Operator [12.5 h]; Labour [1207.42 h]; Telecom Pipe [937.5] | 141,426.24 | 141,426.24 | RD14 |
| RSZone 2Road 14Telecom NetworkA78500-old |  | Zone 2 - Road 14 - Telecom Network - Telecom Pipe - Backfilling (old) | 56d | 2026-08-27 A | 2026-11-01 A | RSZone 2Road 14Telecom NetworkA78480-old | 100% | 2026-08-27 | 2026-11-02 |  |  | Contract Price Original Scope [20214.5 SAR]; Excavator Operator [17.87 h]; Compactor Operator [17.87 h]; Dump Truck Operator [17.87 h]; Water Truck Operator [17.87 h]; Labour [172.58 h]; Telecom Pipe [938] | 20,214.52 | 20,214.52 | RD14 |
| RSZone 2Road 14Telecom NetworkA78470 |  | Zone 2 - Road 14 - Telecom Network - Telecom Pipe - Excavation | 1d | 2026-11-02 A | 2026-11-05 A | RSZone 2Road 14Telecom NetworkA78470-old | 100% | 2026-11-02 | 2026-11-02 |  |  | Contract Price Original Scope [2413.67 SAR]; Excavator Operator [3.2 h]; Dump Truck Operator [3.2 h]; Labour [20.61 h]; Telecom Pipe [112] | 2,413.67 | 2,413.67 | RD14 |
| RSZone 2Road 14Telecom NetworkA78480 |  | Zone 2 - Road 14 - Telecom Network - Telecom Pipe - Concrete Pouring | 1d | 2026-11-02 A | 2026-11-05 A | RSZone 2Road 14Telecom NetworkA78480-old, RSZone 2Road 14Telecom NetworkA78470 | 100% | 2026-11-03 | 2026-11-03 |  |  | Contract Price Original Scope [16971.2 SAR]; Crane Operator [1.5 h]; Pump Operator [1.5 h]; Equipment Operator [1.5 h]; Labour [144.89 h]; Telecom Pipe [112.5] | 16,971.15 | 16,971.15 | RD14 |
| RSZone 2Road 14Telecom NetworkA78490 |  | Zone 2 - Road 14 - Telecom Network - Telecom Pipe - Test | 2d | 2026-11-02 A | 2026-11-05 A | RSZone 2Road 14Telecom NetworkA78500, RSZone 2Road 14Telecom NetworkA78480 | 100% | 2026-11-05 | 2026-11-07 |  |  | Contract Price Original Scope [22628.2 SAR]; Pump Operator [20 h]; Equipment Operator [20 h]; Labour [193.19 h]; Telecom Pipe [1050] | 22,628.2 | 22,628.2 | RD14 |
| RSZone 2Road 14Telecom NetworkA78500 |  | Zone 2 - Road 14 - Telecom Network - Telecom Pipe - Backfilling | 1d | 2026-11-02 A | 2026-11-05 A | RSZone 2Road 14Telecom NetworkA78500-old, RSZone 2Road 14Telecom NetworkA78480 | 100% | 2026-11-04 | 2026-11-04 |  |  | Contract Price Original Scope [2413.67 SAR]; Excavator Operator [2.13 h]; Compactor Operator [2.13 h]; Dump Truck Operator [2.13 h]; Water Truck Operator [2.13 h]; Labour [20.61 h]; Telecom Pipe [112] | 2,413.67 | 2,413.67 | RD14 |
|  | 2 | **TELECOM MANHOLE** |  | 2026-08-30 | 2026-11-25 |  |  |  |  |  |  |  |  |  |  |
| RSZone 2Road 14Telecom NetworkA78460-old |  | Zone 2 - Road 14 - Telecom Network - TELECOM MANHOLE - Manhole Installation (old) | 54d | 2026-08-30 A | 2026-11-01 A | RSZone 2Road 13Telecom NetworkA78370-old | 100% |  |  |  |  | Contract Price Original Scope [99803.7 SAR]; Crane Operator [12.35 h]; Boom Truck Operator [12.35 h]; Equipment Operator [12.35 h]; Labour [852.07 h]; Telecom Manhole [6.65] | 99,803.67 | 99,803.67 | RD14 |
| RSZone 2Road 14Telecom NetworkA78460 |  | Zone 2 - Road 14 - Telecom Network - TELECOM MANHOLE - Manhole Installation | 1d | 2026-11-25 | 2026-11-25 | RSZone 2Road 14Telecom NetworkA78460-old, RSZone 2Road 13Telecom NetworkA78370 |  |  |  | 76.4d | 0d | Contract Price Original Scope [5252.82 SAR]; Crane Operator [0.65 h]; Boom Truck Operator [0.65 h]; Equipment Operator [0.65 h]; Labour [44.85 h]; Telecom Manhole [0.35] | 5,252.82 |  | RD14 |
|  | 16 | **Road 15** |  | 2026-02-01 | 2027-03-14 |  |  |  |  |  |  |  |  |  |  |
|  | 22 | **Storm Network** |  | 2026-02-01 | 2027-03-14 |  |  |  |  |  |  |  |  |  |  |
|  | 1 | **Perforated 160 mm** |  | 2026-02-01 | 2026-11-10 |  |  |  |  |  |  |  |  |  |  |
| RSZone 2Road 15Storm NetworkA73860 |  | Zone 2 - Road 15 - Storm Network - Perforated 160 mm - Excavation | 4.9d | 2026-02-01 A | 2026-02-05 A | RSZone 2Road 12Storm NetworkA74430 | 100% |  |  |  |  | Contract Price Original Scope [958.99 SAR]; Excavator Operator [30 h]; Dump Truck Operator [30 h]; Labour [8.19 h]; Perforated 160 mm [60] | 958.99 | 958.99 | RD15 |
| RSZone 2Road 15Storm NetworkA73870 |  | Zone 2 - Road 15 - Storm Network - Perforated 160 mm - Bedding | 2d | 2026-02-08 A | 2026-02-09 A | RSZone 2Road 15Storm NetworkA73860 | 100% |  |  |  |  | Contract Price Original Scope [479.49 SAR]; Compactor Operator [20 h]; Equipment Operator [20 h]; Water Truck Operator [20 h]; Labour [4.09 h]; Perforated 160 mm [60] | 479.49 | 479.49 | RD15 |
| RSZone 2Road 15Storm NetworkA73880 |  | Zone 2 - Road 15 - Storm Network - Perforated 160 mm - Pipe Installation | 7d | 2026-02-09 A | 2026-02-16 A | RSZone 2Road 15Storm NetworkA73870 | 100% |  |  |  |  | Contract Price Original Scope [6233.43 SAR]; Excavator Operator [40 h]; Crane Operator [40 h]; Equipment Operator [40 h]; Labour [53.22 h]; Perforated 160 mm [60] | 6,233.43 | 6,233.43 | RD15 |
| RSZone 2Road 15Storm NetworkA73900 |  | Zone 2 - Road 15 - Storm Network - Perforated 160 mm - Backfilling | 2.9d | 2026-02-17 A | 2026-02-19 A | RSZone 2Road 15Storm NetworkA73880 | 100% |  |  |  |  | Contract Price Original Scope [958.99 SAR]; Excavator Operator [20 h]; Compactor Operator [20 h]; Dump Truck Operator [20 h]; Water Truck Operator [20 h]; Labour [8.19 h]; Perforated 160 mm [60] | 958.99 | 958.99 | RD15 |
| RSZone 2Road 15Storm NetworkA73890 |  | Zone 2 - Road 15 - Storm Network - Perforated 160 mm - Test | 2d | 2026-11-09 | 2026-11-10 | RSZone 2Road 15Storm NetworkA73900 |  |  |  | 123.4d | 109d | Contract Price Original Scope [958.99 SAR]; Pump Operator [20 h]; Equipment Operator [20 h]; Labour [8.19 h]; Perforated 160 mm [60] | 958.99 |  | RD15 |
|  | 6 | **Gravel and Geotextile** |  | 2026-02-10 | 2026-02-11 |  |  |  |  |  |  |  |  |  |  |
| RSZone 2Road 15Storm NetworkA74490 |  | Zone 2 - Road 15 - Storm Network - Gravel and Geotextile - Installation | 2d | 2026-02-10 A | 2026-02-11 A | RSZone 2Road 15Storm NetworkA73900 | 100% |  |  |  |  | Contract Price Original Scope [7037.9 SAR]; Excavator Operator [8 h]; Dump Truck Operator [8 h]; Equipment Operator [8 h]; Water Truck Operator [8 h]; Labour [60.09 h]; Gravel and Geotextile [60] | 7,037.9 | 7,037.9 | RD15 |

| ID | WBS | Activity | Duration | Start | Finish | Predecessors | Complete | Planned start | Planned finish | Total float | Free float | Resources | Cost | Actual cost | MODON |
| --- | --- | --- | --- | --- | --- | --- | --- | --- | --- | --- | --- | --- | --- | --- | --- |
|  | 8 | **Manhole** |  | 2027-03-08 | 2027-03-14 |  |  |  |  |  |  |  |  |  |  |
| RSZone 2Road 15Storm NetworkA93080 |  | Zone 2 - Road 15 - Storm Network - Manhole - COVER INSTALLATION | 3d | 2027-03-08 | 2027-03-14 | RSZone 2Road 14Storm NetworkA92770 |  |  |  | 14.4d | 0d | Contract Price Original Scope [47223.5 SAR]; Crane Operator [7 h]; Boom Truck Operator [7 h]; Equipment Operator [7 h]; Labour [403.17 h]; Manholes GRP (new + DI cover only) [17] | 47,223.51 |  | RD15 |
|  | 2 | **Potable Water Network** |  | 2026-03-18 | 2026-11-19 |  |  |  |  |  |  |  |  |  |  |
|  | 1 | **Buried Valves** |  | 2026-08-13 | 2026-11-19 |  |  |  |  |  |  |  |  |  |  |
| RSZone 2Road 15Potable NetworkA76240-old |  | Zone 2 - Road 15 - Potable Water Network - Buried Valves - Excavation (old) | 68d | 2026-08-13 A | 2026-11-01 A | RSZone 2Road 14Potable NetworkA75870 | 100% | 2026-08-13 | 2026-11-02 |  |  | Contract Price Original Scope [800.95 SAR]; Excavator Operator [16.67 h]; Dump Truck Operator [16.67 h]; Labour [6.84 h]; Buried Valves [5] | 800.95 | 800.95 | RD15 |
| RSZone 2Road 15Potable NetworkA76250-old |  | Zone 2 - Road 15 - Potable Water Network - Buried Valves - Installation (old) | 66d | 2026-08-16 A | 2026-11-01 A | RSZone 2Road 15Potable NetworkA76240-old | 100% |  |  |  |  | Contract Price Original Scope [10412.3 SAR]; Labour [88.9 h]; Buried Valves [5] | 10,412.33 | 10,412.33 | RD15 |
| RSZone 2Road 15Potable NetworkA76240 |  | Zone 2 - Road 15 - Potable Water Network - Buried Valves - Excavation | 1.33d | 2026-11-09 | 2026-11-10 | RSZone 2Road 15Potable NetworkA76240-old |  |  |  | 91.73d | 0d | Contract Price Original Scope [640.76 SAR]; Excavator Operator [13.33 h]; Dump Truck Operator [13.33 h]; Labour [5.47 h]; Buried Valves [4] | 640.76 |  | RD15 |
| RSZone 2Road 15Potable NetworkA76250 |  | Zone 2 - Road 15 - Potable Water Network - Buried Valves - Installation | 1.33d | 2026-11-10 | 2026-11-11 | RSZone 2Road 15Potable NetworkA76250-old, RSZone 2Road 15Potable NetworkA76240 |  |  |  | 91.73d | 0d | Contract Price Original Scope [8329.87 SAR]; Labour [71.12 h]; Buried Valves [4] | 8,329.87 |  | RD15 |
| RSZone 2Road 15Potable NetworkA76260 |  | Zone 2 - Road 15 - Potable Water Network - Buried Valves - Surface Box | 3d | 2026-11-11 | 2026-11-15 | RSZone 2Road 15Potable NetworkA76250, RSZone 2Road 15Potable NetworkA76240 |  |  |  | 91.73d | 0d | Labour; Buried Valves [9] |  |  | RD15 |
| RSZone 2Road 15Potable NetworkA76270 |  | Zone 2 - Road 15 - Potable Water Network - Buried Valves - Test | 2d | 2026-11-15 | 2026-11-17 | RSZone 2Road 15Potable NetworkA76260 |  |  |  | 91.73d | 0d | Contract Price Original Scope [5766.83 SAR]; Pump Operator [20 h]; Equipment Operator [20 h]; Labour [49.23 h]; Buried Valves [9] | 5,766.83 |  | RD15 |
| RSZone 2Road 15Potable NetworkA76280 |  | Zone 2 - Road 15 - Potable Water Network - Buried Valves - Backfilling | 2d | 2026-11-17 | 2026-11-19 | RSZone 2Road 15Potable NetworkA76270 |  |  |  | 91.73d | 91.53d | Contract Price Original Scope [2883.42 SAR]; Excavator Operator [20 h]; Compactor Operator [20 h]; Dump Truck Operator [20 h]; Water Truck Operator [20 h]; Labour [24.62 h]; Buried Valves [9] | 2,883.42 |  | RD15 |
|  | 7 | **FIRE HYDRANT** |  | 2026-03-18 | 2026-11-16 |  |  |  |  |  |  |  |  |  |  |
| RSZone 2Road 15Potable NetworkA77560 |  | Zone 2 - Road 15 - Potable Water Network - FIRE HYDRANT - Excavation | 4d | 2026-03-18 A | 2026-03-22 A | RSZone 2Road 14Potable NetworkA75870 | 100% |  |  |  |  | Contract Price Original Scope [8323.69 SAR]; Excavator Operator [30 h]; Dump Truck Operator [30 h]; Labour [71.06 h]; Fire Hydrant [6] | 8,323.69 | 8,323.69 | RD15 |
| RSZone 2Road 15Potable NetworkA77570 |  | Zone 2 - Road 15 - Potable Water Network - FIRE HYDRANT - Buried Gate Valve Installation | 4d | 2026-03-23 A | 2026-03-26 A | RSZone 2Road 15Potable NetworkA77560 | 100% |  |  |  |  | Labour; Fire Hydrant [6] |  |  | RD15 |
| RSZone 2Road 15Potable NetworkA77580 |  | Zone 2 - Road 15 - Potable Water Network - FIRE HYDRANT - Fire Hydrant Installation | 4d | 2026-03-29 A | 2026-04-01 A | RSZone 2Road 15Potable NetworkA77570 | 100% |  |  |  |  | Contract Price Original Scope [60762.9 SAR]; Labour [518.76 h]; Fire Hydrant [6] | 60,762.95 | 60,762.95 | RD15 |
| RSZone 2Road 15Potable NetworkA77590 |  | Zone 2 - Road 15 - Potable Water Network - FIRE HYDRANT - Surface Box | 3d | 2026-11-09 | 2026-11-11 | RSZone 2Road 15Potable NetworkA77580 |  |  |  | 94.4d | 0d | Labour; Fire Hydrant [6] |  |  | RD15 |
| RSZone 2Road 15Potable NetworkA77600 |  | Zone 2 - Road 15 - Potable Water Network - FIRE HYDRANT - Test | 2d | 2026-11-12 | 2026-11-14 | RSZone 2Road 15Potable NetworkA77590 |  |  |  | 94.4d | 0d | Contract Price Original Scope [5826.58 SAR]; Pump Operator [20 h]; Equipment Operator [20 h]; Labour [49.74 h]; Fire Hydrant [6] | 5,826.58 |  | RD15 |
| RSZone 2Road 15Potable NetworkA77610 |  | Zone 2 - Road 15 - Potable Water Network - FIRE HYDRANT - Backfilling | 2d | 2026-11-15 | 2026-11-16 | RSZone 2Road 15Potable NetworkA77600 |  |  |  | 94.4d | 94.2d | Contract Price Original Scope [8323.69 SAR]; Excavator Operator [20 h]; Compactor Operator [20 h]; Dump Truck Operator [20 h]; Water Truck Operator [20 h]; Labour [71.06 h]; Fire Hydrant [6] | 8,323.69 |  | RD15 |
|  | 1 | **Lateral Irrigation Network** |  | 2026-10-15 | 2026-11-26 |  |  |  |  |  |  |  |  |  |  |
|  | 5 | **HDPE Fitting** |  | 2026-11-24 | 2026-11-26 |  |  |  |  |  |  |  |  |  |  |
|  | 3 | **Tees for Pipe 125 MM** |  | 2026-11-24 | 2026-11-26 |  |  |  |  |  |  |  |  |  |  |
| RSZone 2Road 15Irrigation NetworkA93120 |  | Zone 2 - Road 15 - Lateral Irrigation Network - Tees for Pipe 125 MM - Installation | 3d | 2026-11-24 | 2026-11-26 | RSZone 2Road 14Irrigation NetworkA92850 |  |  |  | 82.4d | 0d | Contract Price Original Scope [1536.06 SAR]; Labour [13.11 h]; Fittings - Tees (all sizes) [1] | 1,536.06 |  | RD15 |
|  | 3 | **Buried Valves** |  | 2026-10-15 | 2026-11-21 |  |  |  |  |  |  |  |  |  |  |
| RSZone 2Road 15Irrigation NetworkA95140- |  | Zone 2 - Road 15 - Lateral Irrigation Network - Buried Valves - Excavation (old) | 15d | 2026-10-15 A | 2026-11-01 A | RSZone 2Road 14Irrigation NetworkA95100 | 100% | 2026-10-15 | 2026-11-02 |  |  | Contract Price Original Scope [538.05 SAR]; Excavator Operator [10 h]; Dump Truck Operator [10 h]; Labour [4.59 h]; Buried Valves [8] | 538.05 | 538.05 | RD15 |
| RSZone 2Road 15Irrigation NetworkA95150- |  | Zone 2 - Road 15 - Lateral Irrigation Network - Buried Valves - Installation (old) | 13d | 2026-10-18 A | 2026-11-01 A | RSZone 2Road 15Irrigation NetworkA95140- | 100% |  |  |  |  | Contract Price Original Scope [6994.69 SAR]; Labour [59.72 h]; Buried Valves [8] | 6,994.69 | 6,994.69 | RD15 |
| RSZone 2Road 15Irrigation NetworkA95140- |  | Zone 2 - Road 15 - Lateral Irrigation Network - Buried Valves - Excavation (old) | 2d | 2026-11-09 | 2026-11-10 | RSZone 2Road 15Irrigation NetworkA95140- |  |  |  | 89.2d | 0d | Contract Price Original Scope [1076.11 SAR]; Excavator Operator [20 h]; Dump Truck Operator [20 h]; Labour [9.19 h]; Buried Valves [16] | 1,076.11 |  | RD15 |
| RSZone 2Road 15Irrigation NetworkA95150- |  | Zone 2 - Road 15 - Lateral Irrigation Network - Buried Valves - Installation (old) | 2d | 2026-11-11 | 2026-11-12 | RSZone 2Road 15Irrigation NetworkA95150-, RSZone 2Road 15Irrigation NetworkA95140- |  |  |  | 89.2d | 0d | Contract Price Original Scope [13989.4 SAR]; Labour [119.43 h]; Buried Valves [16] | 13,989.38 |  | RD15 |
| RSZone 2Road 15Irrigation NetworkA95160 |  | Zone 2 - Road 15 - Lateral Irrigation Network - Buried Valves - Surface Box | 3d | 2026-11-14 | 2026-11-16 | RSZone 2Road 15Irrigation NetworkA95150-, RSZone 2Road 15Irrigation NetworkA95140- |  |  |  | 89.2d | 0d | Labour; Buried Valves [24] |  |  | RD15 |
| RSZone 2Road 15Irrigation NetworkA95170 |  | Zone 2 - Road 15 - Lateral Irrigation Network - Buried Valves - Test | 2d | 2026-11-17 | 2026-11-18 | RSZone 2Road 15Irrigation NetworkA95160 |  |  |  | 89.2d | 0d | Contract Price Original Scope [6456.64 SAR]; Pump Operator [20 h]; Equipment Operator [20 h]; Labour [55.12 h]; Buried Valves [24] | 6,456.64 |  | RD15 |
| RSZone 2Road 15Irrigation NetworkA95180 |  | Zone 2 - Road 15 - Lateral Irrigation Network - Buried Valves - Backfilling | 2d | 2026-11-19 | 2026-11-21 | RSZone 2Road 15Irrigation NetworkA95170 |  |  |  | 89.2d | 0d | Contract Price Original Scope [3228.32 SAR]; Excavator Operator [20 h]; Compactor Operator [20 h]; Dump Truck Operator [20 h]; Water Truck Operator [20 h]; Labour [27.56 h]; Buried Valves [24] | 3,228.32 |  | RD15 |

| ID | WBS | Activity | Duration | Start | Finish | Predecessors | Complete | Total float | Free float | Resources | Cost | Actual cost | MODON |
| --- | --- | --- | --- | --- | --- | --- | --- | --- | --- | --- | --- | --- | --- |
|  | 6 | **Thrust Block** |  | 2026-11-22 | 2026-11-23 |  |  |  |  |  |  |  |  |
| RSZone 2Road 15Irrigation NetworkA93130 |  | Zone 2 - Road 15 - Lateral Irrigation Network - Thrust Block - Thrust Block | 1.2d | 2026-11-22 | 2026-11-23 | RSZone 2Road 15Irrigation NetworkA95180 |  | 89.2d | 88.56d | Contract Price Original Scope [1021.76 SAR]; Crane Operator [12 h]; Pump Operator [12 h]; Equipment Operator [12 h]; Labour [8.72 h]; Thrust Blocks [1] | 1,021.76 |  | RD15 |
|  | 3 | **Telecom** |  | 2026-08-30 | 2026-11-28 |  |  |  |  |  |  |  |  |
|  | 1 | **Telecom Pipe** |  | 2026-11-09 | 2026-11-28 |  |  |  |  |  |  |  |  |
| RSZone 2Road 15Telecom NetworkA78560 |  | Zone 2 - Road 15 - Telecom Network - Telecom Pipe - Excavation | 3d | 2026-11-09 | 2026-11-11 | RSZone 2Road 14Telecom NetworkA78490, RSZone 2Road 14Telecom NetworkA78470 |  | 0.4d | 0d | Contract Price Original Scope [23468.7 SAR]; Excavator Operator [30 h]; Dump Truck Operator [30 h]; Labour [200.36 h]; Telecom Pipe [1089] | 23,468.67 |  | RD15 |
| RSZone 2Road 15Telecom NetworkA78570 |  | Zone 2 - Road 15 - Telecom Network - Telecom Pipe - Concrete Pouring | 10d | 2026-11-12 | 2026-11-23 | RSZone 2Road 15Telecom NetworkA78560 |  | 0.4d | 0d | Contract Price Original Scope [164281 SAR]; Crane Operator [14 h]; Pump Operator [14 h]; Equipment Operator [14 h]; Labour [1402.54 h]; Telecom Pipe [1089] | 164,280.72 |  | RD15 |
| RSZone 2Road 15Telecom NetworkA78580 |  | Zone 2 - Road 15 - Telecom Network - Telecom Pipe - Test | 2d | 2026-11-24 | 2026-11-25 | RSZone 2Road 15Telecom NetworkA78570 |  | 0.4d | 0d | Contract Price Original Scope [23468.7 SAR]; Pump Operator [20 h]; Equipment Operator [20 h]; Labour [200.36 h]; Telecom Pipe [1089] | 23,468.67 |  | RD15 |
| RSZone 2Road 15Telecom NetworkA78590 |  | Zone 2 - Road 15 - Telecom Network - Telecom Pipe - Backfilling | 2d | 2026-11-26 | 2026-11-28 | RSZone 2Road 15Telecom NetworkA78580 |  | 0.4d | 0d | Contract Price Original Scope [23468.7 SAR]; Excavator Operator [20 h]; Compactor Operator [20 h]; Dump Truck Operator [20 h]; Water Truck Operator [20 h]; Labour [200.36 h]; Telecom Pipe [1089] | 23,468.67 |  | RD15 |
|  | 2 | **TELECOM MANHOLE** |  | 2026-08-30 | 2026-11-26 |  |  |  |  |  |  |  |  |
| RSZone 2Road 15Telecom NetworkA78550-old |  | Zone 2 - Road 15 - Telecom Network - TELECOM MANHOLE - Manhole Installation (old) | 54d | 2026-08-30 A | 2026-11-01 A | RSZone 2Road 14Telecom NetworkA78460-old | 100% |  |  | Contract Price Original Scope [57030.7 SAR]; Crane Operator [12.35 h]; Boom Truck Operator [12.35 h]; Equipment Operator [12.35 h]; Labour [486.9 h]; Telecom Manhole [3.8] | 57,030.67 | 57,030.67 | RD15 |
| RSZone 2Road 15Telecom NetworkA78550 |  | Zone 2 - Road 15 - Telecom Network - TELECOM MANHOLE - Manhole Installation | 1d | 2026-11-26 | 2026-11-26 | RSZone 2Road 15Telecom NetworkA78550-old, RSZone 2Road 14Telecom NetworkA78460 |  | 76.4d | 0d | Contract Price Original Scope [3001.61 SAR]; Crane Operator [0.65 h]; Boom Truck Operator [0.65 h]; Equipment Operator [0.65 h]; Labour [25.63 h]; Telecom Manhole [0.2] | 3,001.61 |  | RD15 |
|  | 17 | **Road 16** |  | 2025-12-18 | 2027-03-23 |  |  |  |  |  |  |  |  |
|  | 1 | **Storm Network** |  | 2027-03-14 | 2027-03-23 |  |  |  |  |  |  |  |  |
|  | 8 | **Manhole** |  | 2027-03-14 | 2027-03-23 |  |  |  |  |  |  |  |  |
| RSZone 2Road 16Storm NetworkA93180 |  | Zone 2 - Road 16 - Storm Network - Manhole - COVER INSTALLATION | 3d | 2027-03-14 | 2027-03-23 | RSZone 2Road 15Storm NetworkA93080 |  | 14.4d | 0d | Contract Price Original Scope [44445.7 SAR]; Crane Operator [7 h]; Boom Truck Operator [7 h]; Equipment Operator [7 h]; Labour [379.45 h]; Manholes GRP (new + DI cover only) [16] | 44,445.66 |  | RD16 |
|  | 6 | **Potable Water Network** |  | 2026-02-15 | 2027-01-10 |  |  |  |  |  |  |  |  |
|  | 1 | **Potable Pipes 200 MM** |  | 2026-07-28 | 2026-11-15 |  |  |  |  |  |  |  |  |
| RSZone 2Road 16Potable NetworkA74880-old |  | Zone 2 - Road 16 - Potable Water Network - Potable Pipes 200 MM - Excavation (old) | 82d | 2026-07-28 A | 2026-11-01 A | RSZone 2Road 15Potable NetworkA77560 | 100% |  |  | Contract Price Original Scope [870.76 SAR]; Excavator Operator [29.78 h]; Dump Truck Operator [29.78 h]; Labour [7.43 h]; Potable Pipes 200 MM [34.75] | 870.76 | 870.76 | RD16 |
| RSZone 2Road 16Potable NetworkA74890-old |  | Zone 2 - Road 16 - Potable Water Network - Potable Pipes 200 MM - Installation (old) | 81d | 2026-07-29 A | 2026-11-01 A | RSZone 2Road 16Potable NetworkA74880-old | 100% |  |  | Contract Price Original Scope [6095.32 SAR]; Labour [52.04 h]; Potable Pipes 200 MM [34.75] | 6,095.32 | 6,095.32 | RD16 |
| RSZone 2Road 16Potable NetworkA74880 |  | Zone 2 - Road 16 - Potable Water Network - Potable Pipes 200 MM - Excavation | 1d | 2026-11-09 | 2026-11-09 | RSZone 2Road 16Potable NetworkA74880-old |  | 95.4d | 0d | Contract Price Original Scope [6.33 SAR]; Excavator Operator [0.22 h]; Dump Truck Operator [0.22 h]; Labour [0.05 h]; Potable Pipes 200 MM [0.25] | 6.33 |  | RD16 |
| RSZone 2Road 16Potable NetworkA74890 |  | Zone 2 - Road 16 - Potable Water Network - Potable Pipes 200 MM - Installation | 1d | 2026-11-10 | 2026-11-10 | RSZone 2Road 16Potable NetworkA74890-old, RSZone 2Road 16Potable NetworkA74880 |  | 95.4d | 0d | Contract Price Original Scope [44.34 SAR]; Labour [0.38 h]; Potable Pipes 200 MM [0.25] | 44.34 |  | RD16 |
| RSZone 2Road 16Potable NetworkA74900 |  | Zone 2 - Road 16 - Potable Water Network - Potable Pipes 200 MM - Test | 2d | 2026-11-11 | 2026-11-12 | RSZone 2Road 16Potable NetworkA74890, RSZone 2Road 16Potable NetworkA74880 |  | 95.4d | 0d | Contract Price Original Scope [877.09 SAR]; Pump Operator [20 h]; Equipment Operator [20 h]; Labour [7.49 h]; Potable Pipes 200 MM [35] | 877.09 |  | RD16 |
| RSZone 2Road 16Potable NetworkA74910 |  | Zone 2 - Road 16 - Potable Water Network - Potable Pipes 200 MM - Backfilling | 2d | 2026-11-14 | 2026-11-15 | RSZone 2Road 16Potable NetworkA74900 |  | 95.4d | 95.2d | Contract Price Original Scope [877.09 SAR]; Excavator Operator [20 h]; Compactor Operator [20 h]; Dump Truck Operator [20 h]; Water Truck Operator [20 h]; Labour [7.49 h]; Potable Pipes 200 MM [35] | 877.09 |  | RD16 |
|  | 2 | **Potable Pipes 225 MM** |  | 2026-02-15 | 2026-11-16 |  |  |  |  |  |  |  |  |
| RSZone 2Road 16Potable NetworkA75240 |  | Zone 2 - Road 16 - Potable Water Network - Potable Pipes 225 MM - Excavation | 3d | 2026-02-15 A | 2026-02-17 A | RSZone 2Road 15Potable NetworkA77580 | 100% |  |  | Contract Price Original Scope [416.7 SAR]; Excavator Operator [30 h]; Dump Truck Operator [30 h]; Labour [3.56 h]; Potable Pipes 225 MM [15] | 416.7 | 416.7 | RD16 |
| RSZone 2Road 16Potable NetworkA75250 |  | Zone 2 - Road 16 - Potable Water Network - Potable Pipes 225 MM - Installation | 3d | 2026-11-09 | 2026-11-11 | RSZone 2Road 16Potable NetworkA75240 |  | 94.4d | 0d | Contract Price Original Scope [2916.89 SAR]; Labour [24.9 h]; Potable Pipes 225 MM [15] | 2,916.89 |  | RD16 |
| RSZone 2Road 16Potable NetworkA75260 |  | Zone 2 - Road 16 - Potable Water Network - Potable Pipes 225 MM - Test | 2d | 2026-11-12 | 2026-11-14 | RSZone 2Road 16Potable NetworkA75250 |  | 94.4d | 0d | Contract Price Original Scope [416.7 SAR]; Pump Operator [20 h]; Equipment Operator [20 h]; Labour [3.56 h]; Potable Pipes 225 MM [15] | 416.7 |  | RD16 |
| RSZone 2Road 16Potable NetworkA75270 |  | Zone 2 - Road 16 - Potable Water Network - Potable Pipes 225 MM - Backfilling | 2d | 2026-11-15 | 2026-11-16 | RSZone 2Road 16Potable NetworkA75260 |  | 94.4d | 94.2d | Contract Price Original Scope [416.7 SAR]; Excavator Operator [20 h]; Compactor Operator [20 h]; Dump Truck Operator [20 h]; Water Truck Operator [20 h]; Labour [3.56 h]; Potable Pipes 225 MM [15] | 416.7 |  | RD16 |

| ID | WBS | Activity | Duration | Start | Finish | Predecessors | Complete | Planned start | Planned finish | Total float | Free float | Resources | Cost | Actual cost | MODON |
| --- | --- | --- | --- | --- | --- | --- | --- | --- | --- | --- | --- | --- | --- | --- | --- |
|  | 5 | **End Cap** |  | 2027-01-06 | 2027-01-10 |  |  |  |  |  |  |  |  |  |  |
| RSZone 2Road 16Potable NetworkA75750 |  | Zone 2 - Road 16 - Potable Water Network - End Cap - Installation | 3d | 2027-01-06 | 2027-01-10 | RSZone 2Road 14Potable NetworkA75740 |  |  |  | 0.2d | 0d | Contract Price Original Scope [730.98 SAR]; Labour [6.24 h]; Fittings - End Caps (all sizes) [1] | 730.98 |  | RD16 |
|  | 4 | **Buried Valves** |  | 2026-08-10 | 2026-11-19 |  |  |  |  |  |  |  |  |  |  |
| RSZone 2Road 16Potable NetworkA76290-old |  | Zone 2 - Road 16 - Potable Water Network - Buried Valves - Excavation (old) | 71d | 2026-08-10 A | 2026-11-01 A | RSZone 2Road 16Potable NetworkA75240 | 100% |  |  |  |  | Contract Price Original Scope [800.95 SAR]; Excavator Operator [15 h]; Dump Truck Operator [15 h]; Labour [6.84 h]; Buried Valves [5] | 800.95 | 800.95 | RD16 |
| RSZone 2Road 16Potable NetworkA76300-old |  | Zone 2 - Road 16 - Potable Water Network - Buried Valves - Installation (old) | 70d | 2026-08-11 A | 2026-11-01 A | RSZone 2Road 16Potable NetworkA76290-old | 100% |  |  |  |  | Contract Price Original Scope [10412.3 SAR]; Labour [88.9 h]; Buried Valves [5] | 10,412.33 | 10,412.33 | RD16 |
| RSZone 2Road 16Potable NetworkA76290 |  | Zone 2 - Road 16 - Potable Water Network - Buried Valves - Excavation | 1.5d | 2026-11-09 | 2026-11-10 | RSZone 2Road 16Potable NetworkA76290-old |  |  |  | 91.4d | 0d | Contract Price Original Scope [800.95 SAR]; Excavator Operator [15 h]; Dump Truck Operator [15 h]; Labour [6.84 h]; Buried Valves [5] | 800.95 |  | RD16 |
| RSZone 2Road 16Potable NetworkA76300 |  | Zone 2 - Road 16 - Potable Water Network - Buried Valves - Installation | 1.5d | 2026-11-10 | 2026-11-11 | RSZone 2Road 16Potable NetworkA76300-old, RSZone 2Road 16Potable NetworkA76290 |  |  |  | 91.4d | 0d | Contract Price Original Scope [10412.3 SAR]; Labour [88.9 h]; Buried Valves [5] | 10,412.33 |  | RD16 |
| RSZone 2Road 16Potable NetworkA76310 |  | Zone 2 - Road 16 - Potable Water Network - Buried Valves - Surface Box | 3d | 2026-11-12 | 2026-11-15 | RSZone 2Road 16Potable NetworkA76300, RSZone 2Road 16Potable NetworkA76290 |  |  |  | 91.4d | 0d | Labour; Buried Valves [10] |  |  | RD16 |
| RSZone 2Road 16Potable NetworkA76320 |  | Zone 2 - Road 16 - Potable Water Network - Buried Valves - Test | 2d | 2026-11-16 | 2026-11-17 | RSZone 2Road 16Potable NetworkA76310 |  |  |  | 91.4d | 0d | Contract Price Original Scope [6407.59 SAR]; Pump Operator [20 h]; Equipment Operator [20 h]; Labour [54.7 h]; Buried Valves [10] | 6,407.59 |  | RD16 |
| RSZone 2Road 16Potable NetworkA76330 |  | Zone 2 - Road 16 - Potable Water Network - Buried Valves - Backfilling | 2d | 2026-11-18 | 2026-11-19 | RSZone 2Road 16Potable NetworkA76320 |  |  |  | 91.4d | 91.2d | Contract Price Original Scope [3203.8 SAR]; Excavator Operator [20 h]; Compactor Operator [20 h]; Dump Truck Operator [20 h]; Water Truck Operator [20 h]; Labour [27.35 h]; Buried Valves [10] | 3,203.8 |  | RD16 |
|  | 7 | **FIRE HYDRANT** |  | 2026-03-19 | 2026-11-16 |  |  |  |  |  |  |  |  |  |  |
| RSZone 2Road 16Potable NetworkA77620 |  | Zone 2 - Road 16 - Potable Water Network - FIRE HYDRANT - Excavation | 6d | 2026-03-19 A | 2026-03-25 A | RSZone 2Road 16Potable NetworkA75240 | 100% | 2026-03-19 | 2026-03-26 |  |  | Contract Price Original Scope [8323.69 SAR]; Excavator Operator [30 h]; Dump Truck Operator [30 h]; Labour [71.06 h]; Fire Hydrant [6] | 8,323.69 | 8,323.69 | RD16 |
| RSZone 2Road 16Potable NetworkA77630 |  | Zone 2 - Road 16 - Potable Water Network - FIRE HYDRANT - Buried Gate Valve Installation | 3d | 2026-03-26 A | 2026-03-29 A | RSZone 2Road 16Potable NetworkA77620 | 100% | 2026-03-26 | 2026-03-30 |  |  | Labour; Fire Hydrant [6] |  |  | RD16 |
| RSZone 2Road 16Potable NetworkA77640 |  | Zone 2 - Road 16 - Potable Water Network - FIRE HYDRANT - Fire Hydrant Installation | 3.9d | 2026-03-30 A | 2026-04-02 A | RSZone 2Road 16Potable NetworkA77630 | 100% |  |  |  |  | Contract Price Original Scope [60762.9 SAR]; Labour [518.76 h]; Fire Hydrant [6] | 60,762.95 | 60,762.95 | RD16 |
| RSZone 2Road 16Potable NetworkA77650 |  | Zone 2 - Road 16 - Potable Water Network - FIRE HYDRANT - Surface Box | 3d | 2026-11-09 | 2026-11-11 | RSZone 2Road 16Potable NetworkA77640 |  |  |  | 94.4d | 0d | Labour; Fire Hydrant [6] |  |  | RD16 |
| RSZone 2Road 16Potable NetworkA77660 |  | Zone 2 - Road 16 - Potable Water Network - FIRE HYDRANT - Test | 2d | 2026-11-12 | 2026-11-14 | RSZone 2Road 16Potable NetworkA77650 |  |  |  | 94.4d | 0d | Contract Price Original Scope [5826.58 SAR]; Pump Operator [20 h]; Equipment Operator [20 h]; Labour [49.74 h]; Fire Hydrant [6] | 5,826.58 |  | RD16 |
| RSZone 2Road 16Potable NetworkA77670 |  | Zone 2 - Road 16 - Potable Water Network - FIRE HYDRANT - Backfilling | 2d | 2026-11-15 | 2026-11-16 | RSZone 2Road 16Potable NetworkA77660 |  |  |  | 94.4d | 94.2d | Contract Price Original Scope [8323.69 SAR]; Excavator Operator [20 h]; Compactor Operator [20 h]; Dump Truck Operator [20 h]; Water Truck Operator [20 h]; Labour [71.06 h]; Fire Hydrant [6] | 8,323.69 |  | RD16 |
|  | 3 | **Sand Bedding** |  | 2026-08-09 | 2026-11-09 |  |  |  |  |  |  |  |  |  |  |
| RSZone 2Road 16Potable NetworkA75880-old |  | Zone 2 - Road 16 - Potable Water Network - Sand Bedding - Bedding (old) | 72d | 2026-08-09 A | 2026-11-01 A | RSZone 2Road 16Potable NetworkA77640 | 100% |  |  |  |  | Contract Price Original Scope [650.46 SAR]; Compactor Operator [14 h]; Equipment Operator [14 h]; Water Truck Operator [14 h]; Labour [5.55 h]; Sand Bedding [35] | 650.46 | 650.46 | RD16 |
| RSZone 2Road 16Potable NetworkA75880 |  | Zone 2 - Road 16 - Potable Water Network - Sand Bedding - Bedding | 1d | 2026-11-09 | 2026-11-09 | RSZone 2Road 16Potable NetworkA75880-old |  |  |  | 100.4d | 100.2d | Contract Price Original Scope [278.77 SAR]; Compactor Operator [6 h]; Equipment Operator [6 h]; Water Truck Operator [6 h]; Labour [2.38 h]; Sand Bedding [15] | 278.77 |  | RD16 |
|  | 22 | **Lateral Irrigation Network-1** |  | 2025-12-18 | 2026-11-16 |  |  |  |  |  |  |  |  |  |  |
|  | 4 | **HDPE Pipes 125 MM** |  | 2026-06-07 | 2026-11-12 |  |  |  |  |  |  |  |  |  |  |
| RSZone 2Road 16Irrigation NetworkA86210 |  | Zone 2 - Road 16 - Lateral Irrigation Network-1 - HDPE Pipes 125 MM - Excavation | 3d | 2026-06-07 A | 2026-06-09 A | RSZone 2Road 14Irrigation NetworkA95100 | 100% |  |  |  |  | Contract Price Original Scope [416.44 SAR]; Excavator Operator [30 h]; Dump Truck Operator [30 h]; Labour [3.56 h]; HDPE Pipes 125 MM [30] | 416.44 | 416.44 | RD16 |
| RSZone 2Road 16Irrigation NetworkA86220 |  | Zone 2 - Road 16 - Lateral Irrigation Network-1 - HDPE Pipes 125 MM - Pipe Installation | 6d | 2026-06-10 A | 2026-06-16 A | RSZone 2Road 16Irrigation NetworkA86210 | 100% |  |  |  |  | Contract Price Original Scope [2915.09 SAR]; Excavator Operator [40 h]; Crane Operator [40 h]; Equipment Operator [40 h]; Labour [24.89 h]; HDPE Pipes 125 MM [30] | 2,915.09 | 2,915.09 | RD16 |
| RSZone 2Road 16Irrigation NetworkA86230 |  | Zone 2 - Road 16 - Lateral Irrigation Network-1 - HDPE Pipes 125 MM - Test | 2d | 2026-11-09 | 2026-11-10 | RSZone 2Road 16Irrigation NetworkA86220 |  |  |  | 97.4d | 0d | Contract Price Original Scope [416.44 SAR]; Pump Operator [20 h]; Equipment Operator [20 h]; Labour [3.56 h]; HDPE Pipes 125 MM [30] | 416.44 |  | RD16 |
| RSZone 2Road 16Irrigation NetworkA86240 |  | Zone 2 - Road 16 - Lateral Irrigation Network-1 - HDPE Pipes 125 MM - Backfilling | 2d | 2026-11-11 | 2026-11-12 | RSZone 2Road 16Irrigation NetworkA86230 |  |  |  | 97.4d | 96.76d | Contract Price Original Scope [416.44 SAR]; Excavator Operator [20 h]; Compactor Operator [20 h]; Dump Truck Operator [20 h]; Water Truck Operator [20 h]; Labour [3.56 h]; HDPE Pipes 125 MM [30] | 416.44 |  | RD16 |

| ID | WBS | Activity | Duration | Start | Finish | Predecessors | Complete | Planned start | Planned finish | Total float | Free float | Resources | Cost | Actual cost | MODON |
| --- | --- | --- | --- | --- | --- | --- | --- | --- | --- | --- | --- | --- | --- | --- | --- |
|  | 1 | **HDPE Fitting** |  | 2025-12-18 | 2026-11-10 |  |  |  |  |  |  |  |  |  |  |
|  | 3 | **Tees for Pipe 125 MM** |  | 2026-07-26 | 2026-11-10 |  |  |  |  |  |  |  |  |  |  |
| RSZone 2Road 16Irrigation NetworkA69450- |  | Zone 2 - Road 16 - Lateral Irrigation Network-1 - Tees for Pipe 125 MM - Installation (old) | 84d | 2026-07-26 A | 2026-11-01 A | RSZone 2Road 16Irrigation NetworkA86220 | 100% |  |  |  |  | Contract Price Original Scope [6144.24 SAR]; Labour [52.46 h]; Fittings - Tees (all sizes) [4] | 6,144.24 | 6,144.24 | RD16 |
| RSZone 2Road 16Irrigation NetworkA69450- |  | Zone 2 - Road 16 - Lateral Irrigation Network-1 - Tees for Pipe 125 MM - Installation (old) | 1.8d | 2026-11-09 | 2026-11-10 | RSZone 2Road 16Irrigation NetworkA69450- |  |  |  | 99.6d | 98.96d | Contract Price Original Scope [9216.36 SAR]; Labour [78.68 h]; Fittings - Tees (all sizes) [6] | 9,216.36 |  | RD16 |
|  | 2 | **Elbows for Pipe 125 MM** |  | 2025-12-18 | 2025-12-21 |  |  |  |  |  |  |  |  |  |  |
| RSZone 2Road 16Irrigation NetworkA69350 |  | Zone 2 - Road 16 - Lateral Irrigation Network-1 - Elbows for Pipe 125 MM - Installation | 3d | 2025-12-18 A | 2025-12-21 A | RSZone 2Road 16Irrigation NetworkA86220 | 100% | 2025-12-18 | 2025-12-22 |  |  | Contract Price Original Scope [3898.37 SAR]; Labour [33.28 h]; Fittings - Elbows (all sizes) [3] | 3,898.37 | 3,898.37 | RD16 |
|  | 2 | **Valves** |  | 2026-01-05 | 2026-11-16 |  |  |  |  |  |  |  |  |  |  |
|  | 1 | **Buried Valves** |  | 2026-01-05 | 2026-11-16 |  |  |  |  |  |  |  |  |  |  |
| RSZone 2Road 16Irrigation NetworkA71350 |  | Zone 2 - Road 16 - Lateral Irrigation Network-1 - Buried Valves - Excavation | 3d | 2026-01-05 A | 2026-01-07 A | RSZone 2Road 16Irrigation NetworkA69350 | 100% |  |  |  |  | Contract Price Original Scope [1277.88 SAR]; Excavator Operator [30 h]; Dump Truck Operator [30 h]; Labour [10.91 h]; Buried Valves [19] | 1,277.88 | 1,277.88 | RD16 |
| RSZone 2Road 16Irrigation NetworkA71360 |  | Zone 2 - Road 16 - Lateral Irrigation Network-1 - Buried Valves - Installation | 0.9d | 2026-01-08 A | 2026-01-09 A | RSZone 2Road 16Irrigation NetworkA71350 | 100% | 2026-01-08 | 2026-01-08 |  |  | Contract Price Original Scope [16612.4 SAR]; Labour [141.83 h]; Buried Valves [19] | 16,612.39 | 16,612.39 | RD16 |
| RSZone 2Road 16Irrigation NetworkA71370 |  | Zone 2 - Road 16 - Lateral Irrigation Network-1 - Buried Valves - Surface Box | 3d | 2026-11-09 | 2026-11-11 | RSZone 2Road 16Irrigation NetworkA71360 |  |  |  | 94.4d | 0d | Labour; Buried Valves [19] |  |  | RD16 |
| RSZone 2Road 16Irrigation NetworkA71380 |  | Zone 2 - Road 16 - Lateral Irrigation Network-1 - Buried Valves - Test | 2d | 2026-11-12 | 2026-11-14 | RSZone 2Road 16Irrigation NetworkA71370 |  |  |  | 94.4d | 0d | Contract Price Original Scope [5111.5 SAR]; Pump Operator [20 h]; Equipment Operator [20 h]; Labour [43.64 h]; Buried Valves [19] | 5,111.5 |  | RD16 |
| RSZone 2Road 16Irrigation NetworkA71390 |  | Zone 2 - Road 16 - Lateral Irrigation Network-1 - Buried Valves - Backfilling | 2d | 2026-11-15 | 2026-11-16 | RSZone 2Road 16Irrigation NetworkA71380 |  |  |  | 94.4d | 93.76d | Contract Price Original Scope [2555.75 SAR]; Excavator Operator [20 h]; Compactor Operator [20 h]; Dump Truck Operator [20 h]; Water Truck Operator [20 h]; Labour [21.82 h]; Buried Valves [19] | 2,555.75 |  | RD16 |
|  | 6 | **Bedding** |  | 2026-01-07 | 2026-01-08 |  |  |  |  |  |  |  |  |  |  |
| RSZone 2Road 16Irrigation NetworkA71920 |  | Zone 2 - Road 16 - Lateral Irrigation Network-1 - Bedding - Bedding | 1.9d | 2026-01-07 A | 2026-01-08 A | RSZone 2Road 16Irrigation NetworkA71360 | 100% |  |  |  |  | Contract Price Original Scope [772.59 SAR]; Compactor Operator [20 h]; Equipment Operator [20 h]; Water Truck Operator [20 h]; Labour [6.6 h]; Bedding [30] | 772.59 | 772.59 | RD16 |
|  | 5 | **Thrust Block** |  | 2026-07-26 | 2026-11-09 |  |  |  |  |  |  |  |  |  |  |
| RSZone 2Road 16Irrigation NetworkA71930- |  | Zone 2 - Road 16 - Lateral Irrigation Network-1 - Thrust Block - Thrust Block (old) | 84d | 2026-07-26 A | 2026-11-01 A | RSZone 2Road 16Irrigation NetworkA71920 | 100% |  |  |  |  | Contract Price Original Scope [7158 SAR]; Crane Operator [6.47 h]; Pump Operator [6.47 h]; Equipment Operator [6.47 h]; Labour [61.11 h]; Thrust Blocks [7.01] | 7,158 | 7,158 | RD16 |
| RSZone 2Road 16Irrigation NetworkA71930- |  | Zone 2 - Road 16 - Lateral Irrigation Network-1 - Thrust Block - Thrust Block (old) | 1d | 2026-11-09 | 2026-11-09 | RSZone 2Road 16Irrigation NetworkA71930- |  |  |  | 100.4d | 99.76d | Contract Price Original Scope [6124.88 SAR]; Crane Operator [5.53 h]; Pump Operator [5.53 h]; Equipment Operator [5.53 h]; Labour [52.29 h]; Thrust Blocks [5.99] | 6,124.88 |  | RD16 |
|  | 3 | **Telecom** |  | 2026-08-31 | 2026-12-17 |  |  |  |  |  |  |  |  |  |  |
|  | 1 | **Telecom Pipe** |  | 2026-11-29 | 2026-12-17 |  |  |  |  |  |  |  |  |  |  |
| RSZone 2Road 16Telecom NetworkA78650 |  | Zone 2 - Road 16 - Telecom Network - Telecom Pipe - Excavation | 3d | 2026-11-29 | 2026-12-01 | RSZone 2Road 15Telecom NetworkA78560, RSZone 2Road 15Telecom NetworkA78590 |  |  |  | 0.4d | 0d | Contract Price Original Scope [40493.7 SAR]; Excavator Operator [30 h]; Dump Truck Operator [30 h]; Labour [345.71 h]; Telecom Pipe [1879] | 40,493.7 |  | RD16 |
| RSZone 2Road 16Telecom NetworkA78660 |  | Zone 2 - Road 16 - Telecom Network - Telecom Pipe - Concrete Pouring | 10d | 2026-12-02 | 2026-12-13 | RSZone 2Road 16Telecom NetworkA78650 |  |  |  | 0.4d | 0d | Contract Price Original Scope [283456 SAR]; Crane Operator [14 h]; Pump Operator [14 h]; Equipment Operator [14 h]; Labour [2420 h]; Telecom Pipe [1879] | 283,455.9 |  | RD16 |
| RSZone 2Road 16Telecom NetworkA78670 |  | Zone 2 - Road 16 - Telecom Network - Telecom Pipe - Test | 2d | 2026-12-14 | 2026-12-15 | RSZone 2Road 16Telecom NetworkA78660 |  |  |  | 0.4d | 0d | Contract Price Original Scope [40493.7 SAR]; Pump Operator [20 h]; Equipment Operator [20 h]; Labour [345.71 h]; Telecom Pipe [1879] | 40,493.7 |  | RD16 |
| RSZone 2Road 16Telecom NetworkA78680 |  | Zone 2 - Road 16 - Telecom Network - Telecom Pipe - Backfilling | 2d | 2026-12-16 | 2026-12-17 | RSZone 2Road 16Telecom NetworkA78670 |  |  |  | 0.4d | 0d | Contract Price Original Scope [40493.7 SAR]; Excavator Operator [20 h]; Compactor Operator [20 h]; Dump Truck Operator [20 h]; Water Truck Operator [20 h]; Labour [345.71 h]; Telecom Pipe [1879] | 40,493.7 |  | RD16 |

| ID | WBS | Activity | Duration | Start | Finish | Predecessors | Complete | Planned start | Planned finish | Total float | Free float | Resources | Cost | Actual cost | MODON |
| --- | --- | --- | --- | --- | --- | --- | --- | --- | --- | --- | --- | --- | --- | --- | --- |
|  | 2 | **TELECOM MANHOLE** |  | 2026-08-31 | 2026-11-28 |  |  |  |  |  |  |  |  |  |  |
| RSZone 2Road 16Telecom NetworkA78640-old |  | Zone 2 - Road 16 - Telecom Network - TELECOM MANHOLE - Manhole Installation (old) | 53d | 2026-08-31 A | 2026-11-01 A | RSZone 2Road 15Telecom NetworkA78550-old | 100% |  |  |  |  | Contract Price Original Scope [57030.7 SAR]; Crane Operator [12.35 h]; Boom Truck Operator [12.35 h]; Equipment Operator [12.35 h]; Labour [486.9 h]; Telecom Manhole [3.8] | 57,030.67 | 57,030.67 | RD16 |
| RSZone 2Road 16Telecom NetworkA78640 |  | Zone 2 - Road 16 - Telecom Network - TELECOM MANHOLE - Manhole Installation | 1d | 2026-11-28 | 2026-11-28 | RSZone 2Road 16Telecom NetworkA78640-old, RSZone 2Road 15Telecom NetworkA78550 |  |  |  | 76.4d | 0d | Contract Price Original Scope [3001.61 SAR]; Crane Operator [0.65 h]; Boom Truck Operator [0.65 h]; Equipment Operator [0.65 h]; Labour [25.63 h]; Telecom Manhole [0.2] | 3,001.61 |  | RD16 |
|  | 18 | **Road 17** |  | 2026-08-13 | 2027-03-27 |  |  |  |  |  |  |  |  |  |  |
|  | 1 | **Storm Network** |  | 2027-03-23 | 2027-03-27 |  |  |  |  |  |  |  |  |  |  |
|  | 8 | **Manhole** |  | 2027-03-23 | 2027-03-27 |  |  |  |  |  |  |  |  |  |  |
| RSZone 2Road 17Storm NetworkA93250 |  | Zone 2 - Road 17 - Storm Network - Manhole - COVER INSTALLATION | 3d | 2027-03-23 | 2027-03-27 | RSZone 2Road 16Storm NetworkA93180 |  |  |  | 14.4d | 0d | Contract Price Original Scope [50001.4 SAR]; Crane Operator [7 h]; Boom Truck Operator [7 h]; Equipment Operator [7 h]; Labour [426.89 h]; Manholes GRP (new + DI cover only) [18] | 50,001.36 |  | RD17 |
|  | 2 | **Potable Water Network** |  | 2026-08-13 | 2026-11-22 |  |  |  |  |  |  |  |  |  |  |
|  | 1 | **Buried Valves** |  | 2026-08-13 | 2026-11-19 |  |  |  |  |  |  |  |  |  |  |
| RSZone 2Road 17Potable NetworkA76340-old |  | Zone 2 - Road 17 - Potable Water Network - Buried Valves - Excavation (old) | 68d | 2026-08-13 A | 2026-11-01 A | RSZone 2Road 16Potable NetworkA77620 | 100% | 2026-08-13 | 2026-11-02 |  |  | Contract Price Original Scope [640.76 SAR]; Excavator Operator [15 h]; Dump Truck Operator [15 h]; Labour [5.47 h]; Buried Valves [4] | 640.76 | 640.76 | RD17 |
| RSZone 2Road 17Potable NetworkA76350-old |  | Zone 2 - Road 17 - Potable Water Network - Buried Valves - Installation (old) | 65d | 2026-08-17 A | 2026-11-01 A | RSZone 2Road 17Potable NetworkA76340-old | 100% |  |  |  |  | Contract Price Original Scope [8329.87 SAR]; Labour [71.12 h]; Buried Valves [4] | 8,329.87 | 8,329.87 | RD17 |
| RSZone 2Road 17Potable NetworkA76340 |  | Zone 2 - Road 17 - Potable Water Network - Buried Valves - Excavation | 1.5d | 2026-11-09 | 2026-11-10 | RSZone 2Road 17Potable NetworkA76340-old |  |  |  | 88.9d | 0d | Contract Price Original Scope [640.76 SAR]; Excavator Operator [15 h]; Dump Truck Operator [15 h]; Labour [5.47 h]; Buried Valves [4] | 640.76 |  | RD17 |
| RSZone 2Road 17Potable NetworkA76350 |  | Zone 2 - Road 17 - Potable Water Network - Buried Valves - Installation | 1.5d | 2026-11-10 | 2026-11-11 | RSZone 2Road 17Potable NetworkA76350-old, RSZone 2Road 17Potable NetworkA76340 |  |  |  | 91.4d | 0d | Contract Price Original Scope [8329.87 SAR]; Labour [71.12 h]; Buried Valves [4] | 8,329.87 |  | RD17 |
| RSZone 2Road 17Potable NetworkA76360 |  | Zone 2 - Road 17 - Potable Water Network - Buried Valves - Surface Box | 3d | 2026-11-12 | 2026-11-15 | RSZone 2Road 17Potable NetworkA76350, RSZone 2Road 17Potable NetworkA76340 |  |  |  | 91.4d | 0d | Labour; Buried Valves [8] |  |  | RD17 |
| RSZone 2Road 17Potable NetworkA76370 |  | Zone 2 - Road 17 - Potable Water Network - Buried Valves - Test | 2d | 2026-11-16 | 2026-11-17 | RSZone 2Road 17Potable NetworkA76360 |  |  |  | 91.4d | 0d | Contract Price Original Scope [5126.07 SAR]; Pump Operator [20 h]; Equipment Operator [20 h]; Labour [43.76 h]; Buried Valves [8] | 5,126.07 |  | RD17 |
| RSZone 2Road 17Potable NetworkA76380 |  | Zone 2 - Road 17 - Potable Water Network - Buried Valves - Backfilling | 2d | 2026-11-18 | 2026-11-19 | RSZone 2Road 17Potable NetworkA76370 |  |  |  | 91.4d | 91.2d | Contract Price Original Scope [2563.04 SAR]; Excavator Operator [20 h]; Compactor Operator [20 h]; Dump Truck Operator [20 h]; Water Truck Operator [20 h]; Labour [21.88 h]; Buried Valves [8] | 2,563.04 |  | RD17 |
|  | 7 | **FIRE HYDRANT** |  | 2026-08-13 | 2026-11-22 |  |  |  |  |  |  |  |  |  |  |
| RSZone 2Road 17Potable NetworkA77680-old |  | Zone 2 - Road 17 - Potable Water Network - FIRE HYDRANT - Excavation (old) | 68d | 2026-08-13 A | 2026-11-01 A | RSZone 2Road 17Potable NetworkA76340-old | 100% | 2026-08-13 | 2026-11-02 |  |  | Contract Price Original Scope [6936.41 SAR]; Excavator Operator [25 h]; Dump Truck Operator [25 h]; Labour [59.22 h]; Fire Hydrant [5] | 6,936.41 | 6,936.41 | RD17 |
| RSZone 2Road 17Potable NetworkA77690-old |  | Zone 2 - Road 17 - Potable Water Network - FIRE HYDRANT - Buried Gate Valve Installation (old) | 65d | 2026-08-17 A | 2026-11-01 A | RSZone 2Road 17Potable NetworkA77680-old | 100% |  |  |  |  | Labour; Fire Hydrant [5] |  |  | RD17 |
| RSZone 2Road 17Potable NetworkA77700-old |  | Zone 2 - Road 17 - Potable Water Network - FIRE HYDRANT - Fire Hydrant Installation (old) | 64d | 2026-08-18 A | 2026-11-01 A | RSZone 2Road 17Potable NetworkA77690-old | 100% |  |  |  |  | Contract Price Original Scope [50635.8 SAR]; Labour [432.3 h]; Fire Hydrant [5] | 50,635.79 | 50,635.79 | RD17 |
| RSZone 2Road 17Potable NetworkA77680 |  | Zone 2 - Road 17 - Potable Water Network - FIRE HYDRANT - Excavation | 1d | 2026-11-10 | 2026-11-11 | RSZone 2Road 17Potable NetworkA77680-old, RSZone 2Road 17Potable NetworkA76340 |  |  |  | 88.9d | 0d | Contract Price Original Scope [1387.28 SAR]; Excavator Operator [5 h]; Dump Truck Operator [5 h]; Labour [11.84 h]; Fire Hydrant [1] | 1,387.28 |  | RD17 |
| RSZone 2Road 17Potable NetworkA77690 |  | Zone 2 - Road 17 - Potable Water Network - FIRE HYDRANT - Buried Gate Valve Installation | 1d | 2026-11-11 | 2026-11-12 | RSZone 2Road 17Potable NetworkA77690-old, RSZone 2Road 17Potable NetworkA77680 |  |  |  | 89.9d | 0d | Labour; Fire Hydrant [1] |  |  | RD17 |
| RSZone 2Road 17Potable NetworkA77700 |  | Zone 2 - Road 17 - Potable Water Network - FIRE HYDRANT - Fire Hydrant Installation | 1d | 2026-11-12 | 2026-11-14 | RSZone 2Road 17Potable NetworkA77700-old, RSZone 2Road 17Potable NetworkA77690 |  |  |  | 89.9d | 0d | Contract Price Original Scope [10127.2 SAR]; Labour [86.46 h]; Fire Hydrant [1] | 10,127.16 |  | RD17 |
| RSZone 2Road 17Potable NetworkA77710 |  | Zone 2 - Road 17 - Potable Water Network - FIRE HYDRANT - Surface Box | 3d | 2026-11-14 | 2026-11-17 | RSZone 2Road 17Potable NetworkA77700, RSZone 2Road 17Potable NetworkA77690 |  |  |  | 89.9d | 0d | Labour; Fire Hydrant [6] |  |  | RD17 |
| RSZone 2Road 17Potable NetworkA77720 |  | Zone 2 - Road 17 - Potable Water Network - FIRE HYDRANT - Test | 2d | 2026-11-17 | 2026-11-19 | RSZone 2Road 17Potable NetworkA77710 |  |  |  | 89.9d | 0d | Contract Price Original Scope [5826.58 SAR]; Pump Operator [20 h]; Equipment Operator [20 h]; Labour [49.74 h]; Fire Hydrant [6] | 5,826.58 |  | RD17 |
| RSZone 2Road 17Potable NetworkA77730 |  | Zone 2 - Road 17 - Potable Water Network - FIRE HYDRANT - Backfilling | 2d | 2026-11-19 | 2026-11-22 | RSZone 2Road 17Potable NetworkA77720 |  |  |  | 89.9d | 89.7d | Contract Price Original Scope [8323.69 SAR]; Excavator Operator [20 h]; Compactor Operator [20 h]; Dump Truck Operator [20 h]; Water Truck Operator [20 h]; Labour [71.06 h]; Fire Hydrant [6] | 8,323.69 |  | RD17 |

| ID | WBS | Activity | Duration | Start | Finish | Predecessors | Complete | Planned start | Planned finish | Total float | Free float | Resources | Cost | Actual cost | MODON |
| --- | --- | --- | --- | --- | --- | --- | --- | --- | --- | --- | --- | --- | --- | --- | --- |
|  | 4 | **Lateral Irrigation Network** |  | 2026-10-15 | 2026-11-21 |  |  |  |  |  |  |  |  |  |  |
|  | 3 | **Buried Valves** |  | 2026-10-15 | 2026-11-21 |  |  |  |  |  |  |  |  |  |  |
| RSZone 2Road 17Irrigation NetworkA95210- |  | Zone 2 - Road 17 - Lateral Irrigation Network - Buried Valves - Excavation (old) | 15d | 2026-10-15 A | 2026-11-01 A | RSZone 2Road 16Irrigation NetworkA71920 | 100% | 2026-10-15 | 2026-11-02 |  |  | Contract Price Original Scope [403.32 SAR]; Excavator Operator [12.85 h]; Dump Truck Operator [12.85 h]; Labour [3.44 h]; Buried Valves [6] | 403.32 | 403.32 | RD17 |
| RSZone 2Road 17Irrigation NetworkA95220- |  | Zone 2 - Road 17 - Lateral Irrigation Network - Buried Valves - Installation (old) | 12d | 2026-10-19 A | 2026-11-01 A | RSZone 2Road 17Irrigation NetworkA95210- | 100% |  |  |  |  | Contract Price Original Scope [5243.1 SAR]; Labour [44.76 h]; Buried Valves [6] | 5,243.1 | 5,243.1 | RD17 |
| RSZone 2Road 17Irrigation NetworkA95210- |  | Zone 2 - Road 17 - Lateral Irrigation Network - Buried Valves - Excavation (old) | 1.71d | 2026-11-09 | 2026-11-10 | RSZone 2Road 17Irrigation NetworkA95210- |  |  |  | 90.97d | 0d | Contract Price Original Scope [538.28 SAR]; Excavator Operator [17.15 h]; Dump Truck Operator [17.15 h]; Labour [4.6 h]; Buried Valves [8] | 538.28 |  | RD17 |
| RSZone 2Road 17Irrigation NetworkA95220- |  | Zone 2 - Road 17 - Lateral Irrigation Network - Buried Valves - Installation (old) | 1.71d | 2026-11-10 | 2026-11-12 | RSZone 2Road 17Irrigation NetworkA95220-, RSZone 2Road 17Irrigation NetworkA95210- |  |  |  | 90.97d | 0d | Contract Price Original Scope [6997.6 SAR]; Labour [59.74 h]; Buried Valves [8] | 6,997.6 |  | RD17 |
| RSZone 2Road 17Irrigation NetworkA95230 |  | Zone 2 - Road 17 - Lateral Irrigation Network - Buried Valves - Surface Box | 3d | 2026-11-12 | 2026-11-16 | RSZone 2Road 17Irrigation NetworkA95220-, RSZone 2Road 17Irrigation NetworkA95210- |  |  |  | 90.97d | 0d | Labour; Buried Valves [14] |  |  | RD17 |
| RSZone 2Road 17Irrigation NetworkA95240 |  | Zone 2 - Road 17 - Lateral Irrigation Network - Buried Valves - Test | 2d | 2026-11-16 | 2026-11-18 | RSZone 2Road 17Irrigation NetworkA95230 |  |  |  | 90.97d | 0d | Contract Price Original Scope [3766.37 SAR]; Pump Operator [20 h]; Equipment Operator [20 h]; Labour [32.16 h]; Buried Valves [14] | 3,766.37 |  | RD17 |
| RSZone 2Road 17Irrigation NetworkA95250 |  | Zone 2 - Road 17 - Lateral Irrigation Network - Buried Valves - Backfilling | 2d | 2026-11-18 | 2026-11-21 | RSZone 2Road 17Irrigation NetworkA95240 |  |  |  | 90.97d | 90.33d | Contract Price Original Scope [1883.19 SAR]; Excavator Operator [20 h]; Compactor Operator [20 h]; Dump Truck Operator [20 h]; Water Truck Operator [20 h]; Labour [16.08 h]; Buried Valves [14] | 1,883.19 |  | RD17 |
|  | 3 | **Telecom** |  | 2026-09-20 | 2027-01-06 |  |  |  |  |  |  |  |  |  |  |
|  | 1 | **Telecom Pipe** |  | 2026-12-19 | 2027-01-06 |  |  |  |  |  |  |  |  |  |  |
| RSZone 2Road 17Telecom NetworkA86250 |  | Zone 2 - Road 17 - Telecom Network - Telecom Pipe - Excavation | 3d | 2026-12-19 | 2026-12-21 | RSZone 2Road 16Telecom NetworkA78650, RSZone 2Road 16Telecom NetworkA78680 |  |  |  | 0.4d | 0d | Contract Price Original Scope [3986.87 SAR]; Excavator Operator [30 h]; Dump Truck Operator [30 h]; Labour [34.04 h]; Telecom Pipe [185] | 3,986.87 |  | RD17 |
| RSZone 2Road 17Telecom NetworkA86260 |  | Zone 2 - Road 17 - Telecom Network - Telecom Pipe - Concrete Pouring | 10d | 2026-12-22 | 2027-01-02 | RSZone 2Road 17Telecom NetworkA86250 |  |  |  | 0.4d | 0d | Contract Price Original Scope [27908.1 SAR]; Crane Operator [14 h]; Pump Operator [14 h]; Equipment Operator [14 h]; Labour [238.27 h]; Telecom Pipe [185] | 27,908.11 |  | RD17 |
| RSZone 2Road 17Telecom NetworkA86270 |  | Zone 2 - Road 17 - Telecom Network - Telecom Pipe - Test | 2d | 2027-01-03 | 2027-01-04 | RSZone 2Road 17Telecom NetworkA86260 |  |  |  | 0.4d | 0d | Contract Price Original Scope [3986.87 SAR]; Pump Operator [20 h]; Equipment Operator [20 h]; Labour [34.04 h]; Telecom Pipe [185] | 3,986.87 |  | RD17 |
| RSZone 2Road 17Telecom NetworkA86280 |  | Zone 2 - Road 17 - Telecom Network - Telecom Pipe - Backfilling | 2d | 2027-01-05 | 2027-01-06 | RSZone 2Road 17Telecom NetworkA86270 |  |  |  | 0.4d | 0d | Contract Price Original Scope [3986.87 SAR]; Excavator Operator [20 h]; Compactor Operator [20 h]; Dump Truck Operator [20 h]; Water Truck Operator [20 h]; Labour [34.04 h]; Telecom Pipe [185] | 3,986.87 |  | RD17 |
|  | 2 | **TELECOM MANHOLE** |  | 2026-09-20 | 2026-11-29 |  |  |  |  |  |  |  |  |  |  |
| RSZone 2Road 17Telecom NetworkA86330-old |  | Zone 2 - Road 17 - Telecom Network - TELECOM MANHOLE - Manhole Installation (old) | 36d | 2026-09-20 A | 2026-11-01 A | RSZone 2Road 16Telecom NetworkA78640-old | 100% |  |  |  |  | Contract Price Original Scope [99803.7 SAR]; Crane Operator [12.35 h]; Boom Truck Operator [12.35 h]; Equipment Operator [12.35 h]; Labour [852.07 h]; Telecom Manhole [6.65] | 99,803.67 | 99,803.67 | RD17 |
| RSZone 2Road 17Telecom NetworkA86330 |  | Zone 2 - Road 17 - Telecom Network - TELECOM MANHOLE - Manhole Installation | 1d | 2026-11-29 | 2026-11-29 | RSZone 2Road 17Telecom NetworkA86330-old, RSZone 2Road 16Telecom NetworkA78640 |  |  |  | 76.4d | 0d | Contract Price Original Scope [5252.82 SAR]; Crane Operator [0.65 h]; Boom Truck Operator [0.65 h]; Equipment Operator [0.65 h]; Labour [44.85 h]; Telecom Manhole [0.35] | 5,252.82 |  | RD17 |
|  | 19 | **Road 18** |  | 2026-01-13 | 2027-03-30 |  |  |  |  |  |  |  |  |  |  |
|  | 1 | **Storm Network** |  | 2027-03-27 | 2027-03-30 |  |  |  |  |  |  |  |  |  |  |
|  | 8 | **Manhole** |  | 2027-03-27 | 2027-03-30 |  |  |  |  |  |  |  |  |  |  |
| RSZone 2Road 18Storm NetworkA93320 |  | Zone 2 - Road 18 - Storm Network - Manhole - COVER INSTALLATION | 3d | 2027-03-27 | 2027-03-30 | RSZone 2Road 17Storm NetworkA93250 |  |  |  | 14.4d | 0d | Contract Price Original Scope [22222.8 SAR]; Crane Operator [7 h]; Boom Truck Operator [7 h]; Equipment Operator [7 h]; Labour [189.73 h]; Manholes GRP (new + DI cover only) [8] | 22,222.83 |  | RD18 |
|  | 5 | **Sewage Network** |  | 2026-01-13 | 2026-02-02 |  |  |  |  |  |  |  |  |  |  |
|  | 1 | **UPVC Pipes 150 MM** |  | 2026-01-13 | 2026-02-02 |  |  |  |  |  |  |  |  |  |  |
| RSZone 2Road 18Sewage NetworkA72550 |  | Zone 2 - Road 18 - Sewage Network - UPVC Pipes 150 MM - Excavation | 6d | 2026-01-13 A | 2026-01-19 A | RSZone 2Road 12Sewage NetworkA92450 | 100% |  |  |  |  | Contract Price Original Scope [281.01 SAR]; Excavator Operator [30 h]; Dump Truck Operator [30 h]; Labour [2.4 h]; UPVC Pipes 150 MM [9] | 281.01 | 281.01 | RD18 |
| RSZone 2Road 18Sewage NetworkA72560 |  | Zone 2 - Road 18 - Sewage Network - UPVC Pipes 150 MM - Pipe Installation | 7d | 2026-01-20 A | 2026-01-27 A | RSZone 2Road 18Sewage NetworkA72550 | 100% |  |  |  |  | Contract Price Original Scope [1217.69 SAR]; Excavator Operator [40 h]; Crane Operator [40 h]; Equipment Operator [40 h]; Labour [10.4 h]; UPVC Pipes 150 MM [9] | 1,217.69 | 1,217.69 | RD18 |
| RSZone 2Road 18Sewage NetworkA72570 |  | Zone 2 - Road 18 - Sewage Network - UPVC Pipes 150 MM - Test | 1.9d | 2026-01-28 A | 2026-01-29 A | RSZone 2Road 18Sewage NetworkA72560 | 100% |  |  |  |  | Contract Price Original Scope [187.34 SAR]; Pump Operator [20 h]; Equipment Operator [20 h]; Labour [1.6 h]; UPVC Pipes 150 MM [9] | 187.34 | 187.34 | RD18 |
| RSZone 2Road 18Sewage NetworkA72580 |  | Zone 2 - Road 18 - Sewage Network - UPVC Pipes 150 MM - Backfilling | 2d | 2026-02-01 A | 2026-02-02 A | RSZone 2Road 18Sewage NetworkA72570 | 100% |  |  |  |  | Contract Price Original Scope [187.34 SAR]; Excavator Operator [20 h]; Compactor Operator [20 h]; Dump Truck Operator [20 h]; Water Truck Operator [20 h]; Labour [1.6 h]; UPVC Pipes 150 MM [9] | 187.34 | 187.34 | RD18 |

| ID | WBS | Activity | Duration | Start | Finish | Predecessors | Complete | Planned start | Planned finish | Total float | Free float | Resources | Cost | Actual cost | MODON |
| --- | --- | --- | --- | --- | --- | --- | --- | --- | --- | --- | --- | --- | --- | --- | --- |
|  | 2 | **Potable Water Network** |  | 2026-03-22 | 2026-11-23 |  |  |  |  |  |  |  |  |  |  |
|  | 1 | **Buried Valves** |  | 2026-08-13 | 2026-11-23 |  |  |  |  |  |  |  |  |  |  |
| RSZone 2Road 18Potable NetworkA76390-old |  | Zone 2 - Road 18 - Potable Water Network - Buried Valves - Excavation (old) | 68d | 2026-08-13 A | 2026-11-01 A | RSZone 2Road 17Potable NetworkA77680-old | 100% | 2026-08-13 | 2026-11-02 |  |  | Contract Price Original Scope [640.76 SAR]; Excavator Operator [15 h]; Dump Truck Operator [15 h]; Labour [5.47 h]; Buried Valves [4] | 640.76 | 640.76 | RD18 |
| RSZone 2Road 18Potable NetworkA76400-old |  | Zone 2 - Road 18 - Potable Water Network - Buried Valves - Installation (old) | 65d | 2026-08-17 A | 2026-11-01 A | RSZone 2Road 18Potable NetworkA76390-old | 100% |  |  |  |  | Contract Price Original Scope [8329.87 SAR]; Labour [71.12 h]; Buried Valves [4] | 8,329.87 | 8,329.87 | RD18 |
| RSZone 2Road 18Potable NetworkA76390 |  | Zone 2 - Road 18 - Potable Water Network - Buried Valves - Excavation | 1.5d | 2026-11-11 | 2026-11-12 | RSZone 2Road 18Potable NetworkA76390-old, RSZone 2Road 17Potable NetworkA77680 |  |  |  | 88.9d | 0d | Contract Price Original Scope [640.76 SAR]; Excavator Operator [15 h]; Dump Truck Operator [15 h]; Labour [5.47 h]; Buried Valves [4] | 640.76 |  | RD18 |
| RSZone 2Road 18Potable NetworkA76400 |  | Zone 2 - Road 18 - Potable Water Network - Buried Valves - Installation | 1.5d | 2026-11-14 | 2026-11-15 | RSZone 2Road 18Potable NetworkA76400-old, RSZone 2Road 18Potable NetworkA76390 |  |  |  | 88.9d | 0d | Contract Price Original Scope [8329.87 SAR]; Labour [71.12 h]; Buried Valves [4] | 8,329.87 |  | RD18 |
| RSZone 2Road 18Potable NetworkA76410 |  | Zone 2 - Road 18 - Potable Water Network - Buried Valves - Surface Box | 3d | 2026-11-15 | 2026-11-18 | RSZone 2Road 18Potable NetworkA76400, RSZone 2Road 18Potable NetworkA76390, RSZone 2Road 17Potable NetworkA77680 |  |  |  | 88.9d | 0d | Labour; Buried Valves [8] |  |  | RD18 |
| RSZone 2Road 18Potable NetworkA76420 |  | Zone 2 - Road 18 - Potable Water Network - Buried Valves - Test | 2d | 2026-11-18 | 2026-11-21 | RSZone 2Road 18Potable NetworkA76410 |  |  |  | 88.9d | 0d | Contract Price Original Scope [5126.07 SAR]; Pump Operator [20 h]; Equipment Operator [20 h]; Labour [43.76 h]; Buried Valves [8] | 5,126.07 |  | RD18 |
| RSZone 2Road 18Potable NetworkA76430 |  | Zone 2 - Road 18 - Potable Water Network - Buried Valves - Backfilling | 2d | 2026-11-21 | 2026-11-23 | RSZone 2Road 18Potable NetworkA76420 |  |  |  | 88.9d | 88.7d | Contract Price Original Scope [2563.04 SAR]; Excavator Operator [20 h]; Compactor Operator [20 h]; Dump Truck Operator [20 h]; Water Truck Operator [20 h]; Labour [21.88 h]; Buried Valves [8] | 2,563.04 |  | RD18 |
|  | 7 | **FIRE HYDRANT** |  | 2026-03-22 | 2026-11-16 |  |  |  |  |  |  |  |  |  |  |
| RSZone 2Road 18Potable NetworkA77740 |  | Zone 2 - Road 18 - Potable Water Network - FIRE HYDRANT - Excavation | 4.9d | 2026-03-22 A | 2026-03-26 A | RSZone 2Road 16Potable NetworkA77640 | 100% |  |  |  |  | Contract Price Original Scope [8323.69 SAR]; Excavator Operator [30 h]; Dump Truck Operator [30 h]; Labour [71.06 h]; Fire Hydrant [6] | 8,323.69 | 8,323.69 | RD18 |
| RSZone 2Road 18Potable NetworkA77750 |  | Zone 2 - Road 18 - Potable Water Network - FIRE HYDRANT - Buried Gate Valve Installation | 3d | 2026-03-29 A | 2026-03-31 A | RSZone 2Road 18Potable NetworkA77740 | 100% |  |  |  |  | Labour; Fire Hydrant [6] |  |  | RD18 |
| RSZone 2Road 18Potable NetworkA77760 |  | Zone 2 - Road 18 - Potable Water Network - FIRE HYDRANT - Fire Hydrant Installation | 1.9d | 2026-04-01 A | 2026-04-02 A | RSZone 2Road 18Potable NetworkA77750 | 100% |  |  |  |  | Contract Price Original Scope [60762.9 SAR]; Labour [518.76 h]; Fire Hydrant [6] | 60,762.95 | 60,762.95 | RD18 |
| RSZone 2Road 18Potable NetworkA77770 |  | Zone 2 - Road 18 - Potable Water Network - FIRE HYDRANT - Surface Box | 3d | 2026-11-09 | 2026-11-11 | RSZone 2Road 18Potable NetworkA77760 |  |  |  | 94.4d | 0d | Labour; Fire Hydrant [6] |  |  | RD18 |
| RSZone 2Road 18Potable NetworkA77780 |  | Zone 2 - Road 18 - Potable Water Network - FIRE HYDRANT - Test | 2d | 2026-11-12 | 2026-11-14 | RSZone 2Road 18Potable NetworkA77770 |  |  |  | 94.4d | 0d | Contract Price Original Scope [5826.58 SAR]; Pump Operator [20 h]; Equipment Operator [20 h]; Labour [49.74 h]; Fire Hydrant [6] | 5,826.58 |  | RD18 |
| RSZone 2Road 18Potable NetworkA77790 |  | Zone 2 - Road 18 - Potable Water Network - FIRE HYDRANT - Backfilling | 2d | 2026-11-15 | 2026-11-16 | RSZone 2Road 18Potable NetworkA77780 |  |  |  | 94.4d | 94.2d | Contract Price Original Scope [8323.69 SAR]; Excavator Operator [20 h]; Compactor Operator [20 h]; Dump Truck Operator [20 h]; Water Truck Operator [20 h]; Labour [71.06 h]; Fire Hydrant [6] | 8,323.69 |  | RD18 |
|  | 4 | **Lateral Irrigation Network** |  | 2026-10-18 | 2026-11-30 |  |  |  |  |  |  |  |  |  |  |
|  | 5 | **HDPE Fitting** |  | 2026-11-28 | 2026-11-30 |  |  |  |  |  |  |  |  |  |  |
|  | 3 | **Tees for Pipe 125 MM** |  | 2026-11-28 | 2026-11-30 |  |  |  |  |  |  |  |  |  |  |
| RSZone 2Road 18Irrigation NetworkA93350 |  | Zone 2 - Road 18 - Lateral Irrigation Network - Tees for Pipe 125 MM - Installation | 3d | 2026-11-28 | 2026-11-30 | RSZone 2Road 15Irrigation NetworkA93120 |  |  |  | 82.4d | 81.76d | Contract Price Original Scope [12288.5 SAR]; Labour [104.91 h]; Fittings - Tees (all sizes) [8] | 12,288.48 |  | RD18 |
|  | 3 | **Buried Valves** |  | 2026-10-18 | 2026-11-21 |  |  |  |  |  |  |  |  |  |  |
| RSZone 2Road 18Irrigation NetworkA95260- |  | Zone 2 - Road 18 - Lateral Irrigation Network - Buried Valves - Excavation (old) | 13d | 2026-10-18 A | 2026-11-01 A | RSZone 2Road 16Irrigation NetworkA71920 | 100% |  |  |  |  | Contract Price Original Scope [403.32 SAR]; Excavator Operator [12.85 h]; Dump Truck Operator [12.85 h]; Labour [3.44 h]; Buried Valves [6] | 403.32 | 403.32 | RD18 |
| RSZone 2Road 18Irrigation NetworkA95270- |  | Zone 2 - Road 18 - Lateral Irrigation Network - Buried Valves - Installation (old) | 11d | 2026-10-20 A | 2026-11-01 A | RSZone 2Road 18Irrigation NetworkA95260- | 100% |  |  |  |  | Contract Price Original Scope [5243.1 SAR]; Labour [44.76 h]; Buried Valves [6] | 5,243.1 | 5,243.1 | RD18 |
| RSZone 2Road 18Irrigation NetworkA95260- |  | Zone 2 - Road 18 - Lateral Irrigation Network - Buried Valves - Excavation (old) | 1.71d | 2026-11-09 | 2026-11-10 | RSZone 2Road 18Irrigation NetworkA95260- |  |  |  | 85.47d | 0d | Contract Price Original Scope [538.28 SAR]; Excavator Operator [17.15 h]; Dump Truck Operator [17.15 h]; Labour [4.6 h]; Buried Valves [8] | 538.28 |  | RD18 |
| RSZone 2Road 18Irrigation NetworkA95270- |  | Zone 2 - Road 18 - Lateral Irrigation Network - Buried Valves - Installation (old) | 1.71d | 2026-11-10 | 2026-11-12 | RSZone 2Road 18Irrigation NetworkA95270-, RSZone 2Road 18Irrigation NetworkA95260- |  |  |  | 85.47d | 0d | Contract Price Original Scope [6997.6 SAR]; Labour [59.74 h]; Buried Valves [8] | 6,997.6 |  | RD18 |
| RSZone 2Road 18Irrigation NetworkA95280 |  | Zone 2 - Road 18 - Lateral Irrigation Network - Buried Valves - Surface Box | 3d | 2026-11-12 | 2026-11-16 | RSZone 2Road 18Irrigation NetworkA95270-, RSZone 2Road 18Irrigation NetworkA95260- |  |  |  | 85.47d | 0d | Labour; Buried Valves [14] |  |  | RD18 |
| RSZone 2Road 18Irrigation NetworkA95290 |  | Zone 2 - Road 18 - Lateral Irrigation Network - Buried Valves - Test | 2d | 2026-11-16 | 2026-11-18 | RSZone 2Road 18Irrigation NetworkA95280 |  |  |  | 85.47d | 0d | Contract Price Original Scope [3766.37 SAR]; Pump Operator [20 h]; Equipment Operator [20 h]; Labour [32.16 h]; Buried Valves [14] | 3,766.37 |  | RD18 |
| RSZone 2Road 18Irrigation NetworkA95300 |  | Zone 2 - Road 18 - Lateral Irrigation Network - Buried Valves - Backfilling | 2d | 2026-11-18 | 2026-11-21 | RSZone 2Road 18Irrigation NetworkA95290 |  |  |  | 85.47d | 0d | Contract Price Original Scope [1883.19 SAR]; Excavator Operator [20 h]; Compactor Operator [20 h]; Dump Truck Operator [20 h]; Water Truck Operator [20 h]; Labour [16.08 h]; Buried Valves [14] | 1,883.19 |  | RD18 |

| ID | WBS | Activity | Duration | Start | Finish | Predecessors | Complete | Planned start | Planned finish | Total float | Free float | Resources | Cost | Actual cost | MODON |
| --- | --- | --- | --- | --- | --- | --- | --- | --- | --- | --- | --- | --- | --- | --- | --- |
|  | 6 | **Thrust Block** |  | 2026-11-21 | 2026-11-22 |  |  |  |  |  |  |  |  |  |  |
| RSZone 2Road 18Irrigation NetworkA93360 |  | Zone 2 - Road 18 - Lateral Irrigation Network - Thrust Block - Thrust Block | 1.2d | 2026-11-21 | 2026-11-22 | RSZone 2Road 18Irrigation NetworkA95300 |  |  |  | 85.47d | 0d | Contract Price Original Scope [8174.08 SAR]; Crane Operator [12 h]; Pump Operator [12 h]; Equipment Operator [12 h]; Labour [69.79 h]; Thrust Blocks [8] | 8,174.08 |  | RD18 |
|  | 3 | **Telecom** |  | 2026-09-01 | 2027-01-30 |  |  |  |  |  |  |  |  |  |  |
|  | 1 | **Telecom Pipe** |  | 2027-01-07 | 2027-01-30 |  |  |  |  |  |  |  |  |  |  |
| RSZone 2Road 18Telecom NetworkA78830 |  | Zone 2 - Road 18 - Telecom Network - Telecom Pipe - Excavation | 3d | 2027-01-07 | 2027-01-10 | RSZone 2Road 17Telecom NetworkA86250, RSZone 2Road 17Telecom NetworkA86280 |  |  |  | 0.4d | 0d | Contract Price Original Scope [25041.9 SAR]; Excavator Operator [30 h]; Dump Truck Operator [30 h]; Labour [213.79 h]; Telecom Pipe [1162] | 25,041.87 |  | RD18 |
| RSZone 2Road 18Telecom NetworkA78840 |  | Zone 2 - Road 18 - Telecom Network - Telecom Pipe - Concrete Pouring | 10d | 2027-01-11 | 2027-01-21 | RSZone 2Road 18Telecom NetworkA78830 |  |  |  | 0.4d | 0d | Contract Price Original Scope [175293 SAR]; Crane Operator [14 h]; Pump Operator [14 h]; Equipment Operator [14 h]; Labour [1496.56 h]; Telecom Pipe [1162] | 175,293.11 |  | RD18 |
| RSZone 2Road 18Telecom NetworkA78850 |  | Zone 2 - Road 18 - Telecom Network - Telecom Pipe - Test | 2d | 2027-01-23 | 2027-01-24 | RSZone 2Road 18Telecom NetworkA78840 |  |  |  | 0.4d | 0d | Contract Price Original Scope [25041.9 SAR]; Pump Operator [20 h]; Equipment Operator [20 h]; Labour [213.79 h]; Telecom Pipe [1162] | 25,041.87 |  | RD18 |
| RSZone 2Road 18Telecom NetworkA78860 |  | Zone 2 - Road 18 - Telecom Network - Telecom Pipe - Backfilling | 5d | 2027-01-25 | 2027-01-30 | RSZone 2Road 18Telecom NetworkA78850 |  |  |  | 0.4d | 0d | Contract Price Original Scope [25041.9 SAR]; Excavator Operator [20 h]; Compactor Operator [20 h]; Dump Truck Operator [20 h]; Water Truck Operator [20 h]; Labour [213.79 h]; Telecom Pipe [1162] | 25,041.87 |  | RD18 |
|  | 2 | **TELECOM MANHOLE** |  | 2026-09-01 | 2026-11-30 |  |  |  |  |  |  |  |  |  |  |
| RSZone 2Road 18Telecom NetworkA78820-old |  | Zone 2 - Road 18 - Telecom Network - TELECOM MANHOLE - Manhole Installation (old) | 52d | 2026-09-01 A | 2026-11-01 A | RSZone 2Road 17Telecom NetworkA86330-old | 100% |  |  |  |  | Contract Price Original Scope [28515.3 SAR]; Crane Operator [12.35 h]; Boom Truck Operator [12.35 h]; Equipment Operator [12.35 h]; Labour [243.45 h]; Telecom Manhole [1.9] | 28,515.33 | 28,515.33 | RD18 |
| RSZone 2Road 18Telecom NetworkA78820 |  | Zone 2 - Road 18 - Telecom Network - TELECOM MANHOLE - Manhole Installation | 1d | 2026-11-30 | 2026-11-30 | RSZone 2Road 18Telecom NetworkA78820-old, RSZone 2Road 17Telecom NetworkA86330 |  |  |  | 76.4d | 0d | Contract Price Original Scope [1500.81 SAR]; Crane Operator [0.65 h]; Boom Truck Operator [0.65 h]; Equipment Operator [0.65 h]; Labour [12.81 h]; Telecom Manhole [0.1] | 1,500.81 |  | RD18 |
|  | 20 | **Road 19** |  | 2026-03-01 | 2027-04-03 |  |  |  |  |  |  |  |  |  |  |
|  | 1 | **Storm Network** |  | 2027-03-30 | 2027-04-03 |  |  |  |  |  |  |  |  |  |  |
|  | 8 | **Manhole** |  | 2027-03-30 | 2027-04-03 |  |  |  |  |  |  |  |  |  |  |
| RSZone 2Road 19Storm NetworkA93410 |  | Zone 2 - Road 19 - Storm Network - Manhole - COVER INSTALLATION | 3d | 2027-03-30 | 2027-04-03 | RSZone 2Road 18Storm NetworkA93320 |  |  |  | 14.4d | 0d | Contract Price Original Scope [13889.3 SAR]; Crane Operator [7 h]; Boom Truck Operator [7 h]; Equipment Operator [7 h]; Labour [118.58 h]; Manholes GRP (new + DI cover only) [5] | 13,889.27 |  | RD19 |
|  | 4 | **Potable Water Network** |  | 2026-03-01 | 2027-01-13 |  |  |  |  |  |  |  |  |  |  |
|  | 1 | **Buried Valves** |  | 2026-08-12 | 2026-11-19 |  |  |  |  |  |  |  |  |  |  |
| RSZone 2Road 19Potable NetworkA76440-old |  | Zone 2 - Road 19 - Potable Water Network - Buried Valves - Excavation (old) | 69d | 2026-08-12 A | 2026-11-01 A | RSZone 2Road 18Potable NetworkA77740 | 100% |  |  |  |  | Contract Price Original Scope [640.76 SAR]; Excavator Operator [15 h]; Dump Truck Operator [15 h]; Labour [5.47 h]; Buried Valves [4] | 640.76 | 640.76 | RD19 |
| RSZone 2Road 19Potable NetworkA76450-old |  | Zone 2 - Road 19 - Potable Water Network - Buried Valves - Installation (old) | 68d | 2026-08-13 A | 2026-11-01 A | RSZone 2Road 19Potable NetworkA76440-old | 100% | 2026-08-13 | 2026-11-02 |  |  | Contract Price Original Scope [8329.87 SAR]; Labour [71.12 h]; Buried Valves [4] | 8,329.87 | 8,329.87 | RD19 |
| RSZone 2Road 19Potable NetworkA76440 |  | Zone 2 - Road 19 - Potable Water Network - Buried Valves - Excavation | 1.5d | 2026-11-09 | 2026-11-10 | RSZone 2Road 19Potable NetworkA76440-old |  |  |  | 89.9d | 0d | Contract Price Original Scope [640.76 SAR]; Excavator Operator [15 h]; Dump Truck Operator [15 h]; Labour [5.47 h]; Buried Valves [4] | 640.76 |  | RD19 |
| RSZone 2Road 19Potable NetworkA76450 |  | Zone 2 - Road 19 - Potable Water Network - Buried Valves - Installation | 1.5d | 2026-11-10 | 2026-11-11 | RSZone 2Road 19Potable NetworkA76450-old, RSZone 2Road 19Potable NetworkA76440 |  |  |  | 91.4d | 0d | Contract Price Original Scope [8329.87 SAR]; Labour [71.12 h]; Buried Valves [4] | 8,329.87 |  | RD19 |
| RSZone 2Road 19Potable NetworkA76460 |  | Zone 2 - Road 19 - Potable Water Network - Buried Valves - Surface Box | 3d | 2026-11-12 | 2026-11-15 | RSZone 2Road 19Potable NetworkA76450, RSZone 2Road 19Potable NetworkA76440 |  |  |  | 91.4d | 0d | Labour; Buried Valves [8] |  |  | RD19 |
| RSZone 2Road 19Potable NetworkA76470 |  | Zone 2 - Road 19 - Potable Water Network - Buried Valves - Test | 2d | 2026-11-16 | 2026-11-17 | RSZone 2Road 19Potable NetworkA76460 |  |  |  | 91.4d | 0d | Contract Price Original Scope [5126.07 SAR]; Pump Operator [20 h]; Equipment Operator [20 h]; Labour [43.76 h]; Buried Valves [8] | 5,126.07 |  | RD19 |
| RSZone 2Road 19Potable NetworkA76480 |  | Zone 2 - Road 19 - Potable Water Network - Buried Valves - Backfilling | 2d | 2026-11-18 | 2026-11-19 | RSZone 2Road 19Potable NetworkA76470 |  |  |  | 91.4d | 91.2d | Contract Price Original Scope [2563.04 SAR]; Excavator Operator [20 h]; Compactor Operator [20 h]; Dump Truck Operator [20 h]; Water Truck Operator [20 h]; Labour [21.88 h]; Buried Valves [8] | 2,563.04 |  | RD19 |

| ID | WBS | Activity | Duration | Start | Finish | Predecessors | Complete | Planned start | Planned finish | Total float | Free float | Resources | Cost | Actual cost | MODON |
| --- | --- | --- | --- | --- | --- | --- | --- | --- | --- | --- | --- | --- | --- | --- | --- |
|  | 7 | **FIRE HYDRANT** |  | 2026-08-18 | 2026-11-22 |  |  |  |  |  |  |  |  |  |  |
| RSZone 2Road 19Potable NetworkA77800-old |  | Zone 2 - Road 19 - Potable Water Network - FIRE HYDRANT - Excavation (old) | 64d | 2026-08-18 A | 2026-11-01 A | RSZone 2Road 19Potable NetworkA76440-old | 100% |  |  |  |  | Contract Price Original Scope [6936.41 SAR]; Excavator Operator [25 h]; Dump Truck Operator [25 h]; Labour [59.22 h]; Fire Hydrant [5] | 6,936.41 | 6,936.41 | RD19 |
| RSZone 2Road 19Potable NetworkA77810-old |  | Zone 2 - Road 19 - Potable Water Network - FIRE HYDRANT - Buried Gate Valve Installation (old) | 63d | 2026-08-19 A | 2026-11-01 A | RSZone 2Road 19Potable NetworkA77800-old | 100% |  |  |  |  | Labour; Fire Hydrant [5] |  |  | RD19 |
| RSZone 2Road 19Potable NetworkA77820-old |  | Zone 2 - Road 19 - Potable Water Network - FIRE HYDRANT - Fire Hydrant Installation (old) | 62d | 2026-08-20 A | 2026-11-01 A | RSZone 2Road 19Potable NetworkA77810-old | 100% | 2026-08-20 | 2026-11-02 |  |  | Contract Price Original Scope [50635.8 SAR]; Labour [432.3 h]; Fire Hydrant [5] | 50,635.79 | 50,635.79 | RD19 |
| RSZone 2Road 19Potable NetworkA77800 |  | Zone 2 - Road 19 - Potable Water Network - FIRE HYDRANT - Excavation | 1d | 2026-11-10 | 2026-11-11 | RSZone 2Road 19Potable NetworkA77800-old, RSZone 2Road 19Potable NetworkA76440 |  |  |  | 89.9d | 0d | Contract Price Original Scope [1387.28 SAR]; Excavator Operator [5 h]; Dump Truck Operator [5 h]; Labour [11.84 h]; Fire Hydrant [1] | 1,387.28 |  | RD19 |
| RSZone 2Road 19Potable NetworkA77810 |  | Zone 2 - Road 19 - Potable Water Network - FIRE HYDRANT - Buried Gate Valve Installation | 1d | 2026-11-11 | 2026-11-12 | RSZone 2Road 19Potable NetworkA77810-old, RSZone 2Road 19Potable NetworkA77800 |  |  |  | 89.9d | 0d | Labour; Fire Hydrant [1] |  |  | RD19 |
| RSZone 2Road 19Potable NetworkA77820 |  | Zone 2 - Road 19 - Potable Water Network - FIRE HYDRANT - Fire Hydrant Installation | 1d | 2026-11-12 | 2026-11-14 | RSZone 2Road 19Potable NetworkA77820-old, RSZone 2Road 19Potable NetworkA77810 |  |  |  | 89.9d | 0d | Contract Price Original Scope [10127.2 SAR]; Labour [86.46 h]; Fire Hydrant [1] | 10,127.16 |  | RD19 |
| RSZone 2Road 19Potable NetworkA77830 |  | Zone 2 - Road 19 - Potable Water Network - FIRE HYDRANT - Surface Box | 3d | 2026-11-14 | 2026-11-17 | RSZone 2Road 19Potable NetworkA77820, RSZone 2Road 19Potable NetworkA77800, RSZone 2Road 19Potable NetworkA77810 |  |  |  | 89.9d | 0d | Labour; Fire Hydrant [6] |  |  | RD19 |
| RSZone 2Road 19Potable NetworkA77840 |  | Zone 2 - Road 19 - Potable Water Network - FIRE HYDRANT - Test | 2d | 2026-11-17 | 2026-11-19 | RSZone 2Road 19Potable NetworkA77830 |  |  |  | 89.9d | 0d | Contract Price Original Scope [5826.58 SAR]; Pump Operator [20 h]; Equipment Operator [20 h]; Labour [49.74 h]; Fire Hydrant [6] | 5,826.58 |  | RD19 |
| RSZone 2Road 19Potable NetworkA77850 |  | Zone 2 - Road 19 - Potable Water Network - FIRE HYDRANT - Backfilling | 2d | 2026-11-19 | 2026-11-22 | RSZone 2Road 19Potable NetworkA77840 |  |  |  | 89.9d | 89.7d | Contract Price Original Scope [8323.69 SAR]; Excavator Operator [20 h]; Compactor Operator [20 h]; Dump Truck Operator [20 h]; Water Truck Operator [20 h]; Labour [71.06 h]; Fire Hydrant [6] | 8,323.69 |  | RD19 |
|  | 2 | **Thurst Blocks** |  | 2026-03-01 | 2026-03-02 |  |  |  |  |  |  |  |  |  |  |
| RSZone 2Road 19Potable NetworkA75820 |  | Zone 2 - Road 19 - Potable Water Network - Thurst Blocks - Thrust Block | 2d | 2026-03-01 A | 2026-03-02 A | RSZone 2Road 18Potable NetworkA77760 | 100% |  |  |  |  | Contract Price Original Scope [10120 SAR]; Crane Operator [27 h]; Pump Operator [27 h]; Equipment Operator [27 h]; Labour [86.4 h]; Thrust Blocks [3] | 10,120.02 | 10,120.02 | RD19 |
|  | 3 | **Tees** |  | 2027-01-10 | 2027-01-13 |  |  |  |  |  |  |  |  |  |  |
| RSZone 2Road 19Potable NetworkA75690 |  | Zone 2 - Road 19 - Potable Water Network - Tees - Installation | 3d | 2027-01-10 | 2027-01-13 | RSZone 2Road 16Potable NetworkA75750 |  |  |  | 0.2d | 0d | Contract Price Original Scope [5999.2 SAR]; Labour [51.22 h]; Fittings - Tees (all sizes) [2] | 5,999.2 |  | RD19 |
|  | 2 | **Lateral Irrigation Network** |  | 2026-10-18 | 2026-11-22 |  |  |  |  |  |  |  |  |  |  |
|  | 3 | **Buried Valves** |  | 2026-10-18 | 2026-11-22 |  |  |  |  |  |  |  |  |  |  |
| RSZone 2Road 19Irrigation NetworkA95310- |  | Zone 2 - Road 19 - Lateral Irrigation Network - Buried Valves - Excavation (old) | 13d | 2026-10-18 A | 2026-11-01 A | RSZone 2Road 16Irrigation NetworkA71350 | 100% |  |  |  |  | Contract Price Original Scope [335.98 SAR]; Excavator Operator [9.37 h]; Dump Truck Operator [9.37 h]; Labour [2.87 h]; Buried Valves [5] | 335.98 | 335.98 | RD19 |
| RSZone 2Road 19Irrigation NetworkA95320- |  | Zone 2 - Road 19 - Lateral Irrigation Network - Buried Valves - Installation (old) | 11d | 2026-10-20 A | 2026-11-01 A | RSZone 2Road 19Irrigation NetworkA95310- | 100% |  |  |  |  | Contract Price Original Scope [4375.57 SAR]; Labour [37.36 h]; Buried Valves [5] | 4,375.57 | 4,375.57 | RD19 |
| RSZone 2Road 19Irrigation NetworkA95310- |  | Zone 2 - Road 19 - Lateral Irrigation Network - Buried Valves - Excavation (old) | 2.06d | 2026-11-09 | 2026-11-11 | RSZone 2Road 19Irrigation NetworkA95310- |  |  |  | 89.71d | 0d | Contract Price Original Scope [740.12 SAR]; Excavator Operator [20.63 h]; Dump Truck Operator [20.63 h]; Labour [6.32 h]; Buried Valves [11] | 740.12 |  | RD19 |
| RSZone 2Road 19Irrigation NetworkA95320- |  | Zone 2 - Road 19 - Lateral Irrigation Network - Buried Valves - Installation (old) | 2.06d | 2026-11-11 | 2026-11-14 | RSZone 2Road 19Irrigation NetworkA95320-, RSZone 2Road 19Irrigation NetworkA95310- |  |  |  | 90.28d | 0d | Contract Price Original Scope [9613.81 SAR]; Labour [82.08 h]; Buried Valves [11] | 9,613.81 |  | RD19 |
| RSZone 2Road 19Irrigation NetworkA95330 |  | Zone 2 - Road 19 - Lateral Irrigation Network - Buried Valves - Surface Box | 3d | 2026-11-14 | 2026-11-17 | RSZone 2Road 19Irrigation NetworkA95320- |  |  |  | 90.28d | 0d | Labour; Buried Valves [16] |  |  | RD19 |
| RSZone 2Road 19Irrigation NetworkA95340 |  | Zone 2 - Road 19 - Lateral Irrigation Network - Buried Valves - Test | 2d | 2026-11-17 | 2026-11-19 | RSZone 2Road 19Irrigation NetworkA95330, RSZone 2Road 19Irrigation NetworkA95310- |  |  |  | 90.28d | 0d | Contract Price Original Scope [4304.42 SAR]; Pump Operator [20 h]; Equipment Operator [20 h]; Labour [36.75 h]; Buried Valves [16] | 4,304.42 |  | RD19 |
| RSZone 2Road 19Irrigation NetworkA95350 |  | Zone 2 - Road 19 - Lateral Irrigation Network - Buried Valves - Backfilling | 2d | 2026-11-19 | 2026-11-22 | RSZone 2Road 19Irrigation NetworkA95340 |  |  |  | 90.28d | 89.64d | Contract Price Original Scope [2152.21 SAR]; Excavator Operator [20 h]; Compactor Operator [20 h]; Dump Truck Operator [20 h]; Water Truck Operator [20 h]; Labour [18.37 h]; Buried Valves [16] | 2,152.21 |  | RD19 |
|  | 3 | **Telecom** |  | 2026-10-08 | 2027-03-06 |  |  |  |  |  |  |  |  |  |  |
|  | 1 | **Telecom Pipe** |  | 2027-01-31 | 2027-03-06 |  |  |  |  |  |  |  |  |  |  |
| RSZone 2Road 19Telecom NetworkA88470 |  | Zone 2 - Road 19 - Telecom Network - Telecom Pipe - Excavation | 5d | 2027-01-31 | 2027-02-04 | RSZone 2Road 18Telecom NetworkA78830, RSZone 2Road 18Telecom NetworkA78860 |  |  |  | 0.4d | 0d | Contract Price Original Scope [42411.7 SAR]; Excavator Operator [30 h]; Dump Truck Operator [30 h]; Labour [362.09 h]; Telecom Pipe [1968] | 42,411.71 |  | RD19 |
| RSZone 2Road 19Telecom NetworkA88480 |  | Zone 2 - Road 19 - Telecom Network - Telecom Pipe - Concrete Pouring | 15d | 2027-02-06 | 2027-02-25 | RSZone 2Road 19Telecom NetworkA88470 |  |  |  | 11.4d | 0d | Contract Price Original Scope [296882 SAR]; Crane Operator [13 h]; Pump Operator [13 h]; Equipment Operator [13 h]; Labour [2534.62 h]; Telecom Pipe [1968] | 296,881.96 |  | RD19 |
| RSZone 2Road 19Telecom NetworkA88490 |  | Zone 2 - Road 19 - Telecom Network - Telecom Pipe - Test | 2d | 2027-02-27 | 2027-03-02 | RSZone 2Road 19Telecom NetworkA88480 |  |  |  | 11.4d | 0d | Contract Price Original Scope [42411.7 SAR]; Pump Operator [20 h]; Equipment Operator [20 h]; Labour [362.09 h]; Telecom Pipe [1968] | 42,411.71 |  | RD19 |
| RSZone 2Road 19Telecom NetworkA88500 |  | Zone 2 - Road 19 - Telecom Network - Telecom Pipe - Backfilling | 2d | 2027-03-02 | 2027-03-06 | RSZone 2Road 19Telecom NetworkA88490 |  |  |  | 11.4d | 11d | Contract Price Original Scope [42411.7 SAR]; Excavator Operator [20 h]; Compactor Operator [20 h]; Dump Truck Operator [20 h]; Water Truck Operator [20 h]; Labour [362.09 h]; Telecom Pipe [1968] | 42,411.71 |  | RD19 |

| ID | WBS | Activity | Duration | Start | Finish | Predecessors | Complete | Planned start | Planned finish | Total float | Free float | Resources | Cost | Actual cost | MODON |
| --- | --- | --- | --- | --- | --- | --- | --- | --- | --- | --- | --- | --- | --- | --- | --- |
|  | 2 | **TELECOM MANHOLE** |  | 2026-10-08 | 2026-12-01 |  |  |  |  |  |  |  |  |  |  |
| RSZone 2Road 19Telecom NetworkA88520-old |  | Zone 2 - Road 19 - Telecom Network - TELECOM MANHOLE - Manhole Installation (old) | 21d | 2026-10-08 A | 2026-11-01 A | RSZone 2Road 18Telecom NetworkA78820-old | 100% | 2026-10-08 | 2026-11-02 |  |  | Contract Price Original Scope [85546 SAR]; Crane Operator [12.35 h]; Boom Truck Operator [12.35 h]; Equipment Operator [12.35 h]; Labour [730.35 h]; Telecom Manhole [5.7] | 85,546 | 85,546 | RD19 |
| RSZone 2Road 19Telecom NetworkA88520 |  | Zone 2 - Road 19 - Telecom Network - TELECOM MANHOLE - Manhole Installation | 1d | 2026-12-01 | 2026-12-01 | RSZone 2Road 19Telecom NetworkA88520-old, RSZone 2Road 18Telecom NetworkA78820 |  |  |  | 76.4d | 0d | Contract Price Original Scope [4502.42 SAR]; Crane Operator [0.65 h]; Boom Truck Operator [0.65 h]; Equipment Operator [0.65 h]; Labour [38.44 h]; Telecom Manhole [0.3] | 4,502.42 |  | RD19 |
|  | 21 | **Road 20** |  | 2026-03-23 | 2027-04-03 |  |  |  |  |  |  |  |  |  |  |
|  | 2 | **Storm Network** |  | 2026-06-07 | 2027-04-03 |  |  |  |  |  |  |  |  |  |  |
|  | 1 | **Perforated 160 mm** |  | 2026-06-07 | 2026-11-10 |  |  |  |  |  |  |  |  |  |  |
| RSZone 2Road 20Storm NetworkA86340 |  | Zone 2 - Road 20 - Storm Network - Perforated 160 mm - Excavation | 3d | 2026-06-07 A | 2026-06-09 A | RSZone 2Road 15Storm NetworkA74490 | 100% |  |  |  |  | Contract Price Original Scope [4922.81 SAR]; Excavator Operator [30 h]; Dump Truck Operator [30 h]; Labour [42.03 h]; Perforated 160 mm [308] | 4,922.81 | 4,922.81 | RD20 |
| RSZone 2Road 20Storm NetworkA86350 |  | Zone 2 - Road 20 - Storm Network - Perforated 160 mm - Bedding | 1.9d | 2026-06-10 A | 2026-06-11 A | RSZone 2Road 20Storm NetworkA86340 | 100% |  |  |  |  | Contract Price Original Scope [2461.41 SAR]; Compactor Operator [20 h]; Equipment Operator [20 h]; Water Truck Operator [20 h]; Labour [21.01 h]; Perforated 160 mm [308] | 2,461.41 | 2,461.41 | RD20 |
| RSZone 2Road 20Storm NetworkA86360 |  | Zone 2 - Road 20 - Storm Network - Perforated 160 mm - Pipe Installation | 7d | 2026-06-14 A | 2026-06-21 A | RSZone 2Road 20Storm NetworkA86350 | 100% |  |  |  |  | Contract Price Original Scope [31998.3 SAR]; Excavator Operator [40 h]; Crane Operator [40 h]; Equipment Operator [40 h]; Labour [273.18 h]; Perforated 160 mm [308] | 31,998.29 | 31,998.29 | RD20 |
| RSZone 2Road 20Storm NetworkA86380 |  | Zone 2 - Road 20 - Storm Network - Perforated 160 mm - Backfilling | 2d | 2026-06-22 A | 2026-06-23 A | RSZone 2Road 20Storm NetworkA86360 | 100% |  |  |  |  | Contract Price Original Scope [4922.81 SAR]; Excavator Operator [20 h]; Compactor Operator [20 h]; Dump Truck Operator [20 h]; Water Truck Operator [20 h]; Labour [42.03 h]; Perforated 160 mm [308] | 4,922.81 | 4,922.81 | RD20 |
| RSZone 2Road 20Storm NetworkA86370 |  | Zone 2 - Road 20 - Storm Network - Perforated 160 mm - Test | 2d | 2026-11-09 | 2026-11-10 | RSZone 2Road 20Storm NetworkA86380 |  |  |  | 123.4d | 109d | Contract Price Original Scope [4922.81 SAR]; Pump Operator [20 h]; Equipment Operator [20 h]; Labour [42.03 h]; Perforated 160 mm [308] | 4,922.81 |  | RD20 |
|  | 6 | **Gravel and Geotextile** |  | 2026-06-09 | 2026-06-11 |  |  |  |  |  |  |  |  |  |  |
| RSZone 2Road 20Storm NetworkA86390 |  | Zone 2 - Road 20 - Storm Network - Gravel and Geotextile - Installation | 2.9d | 2026-06-09 A | 2026-06-11 A | RSZone 2Road 20Storm NetworkA86380 | 100% |  |  |  |  | Contract Price Original Scope [36127.9 SAR]; Excavator Operator [8 h]; Dump Truck Operator [8 h]; Equipment Operator [8 h]; Water Truck Operator [8 h]; Labour [308.44 h]; Gravel and Geotextile [308] | 36,127.87 | 36,127.87 | RD20 |
|  | 8 | **Manhole** |  | 2027-03-30 | 2027-04-03 |  |  |  |  |  |  |  |  |  |  |
| RSZone 2Road 20Storm NetworkA93480 |  | Zone 2 - Road 20 - Storm Network - Manhole - COVER INSTALLATION | 3d | 2027-03-30 | 2027-04-03 | RSZone 2Road 19Storm NetworkA93410 SS |  |  |  | 14.4d | 0d | Contract Price Original Scope [5555.71 SAR]; Crane Operator [7 h]; Boom Truck Operator [7 h]; Equipment Operator [7 h]; Labour [47.43 h]; Manholes GRP (new + DI cover only) [2] | 5,555.71 |  | RD20 |
|  | 3 | **Potable Water Network** |  | 2026-03-23 | 2026-11-19 |  |  |  |  |  |  |  |  |  |  |
|  | 1 | **Buried Valves** |  | 2026-08-16 | 2026-11-19 |  |  |  |  |  |  |  |  |  |  |
| RSZone 2Road 20Potable NetworkA76490-old |  | Zone 2 - Road 20 - Potable Water Network - Buried Valves - Excavation (old) | 66d | 2026-08-16 A | 2026-11-01 A | RSZone 2Road 19Potable NetworkA75820 | 100% |  |  |  |  | Contract Price Original Scope [640.76 SAR]; Excavator Operator [15 h]; Dump Truck Operator [15 h]; Labour [5.47 h]; Buried Valves [4] | 640.76 | 640.76 | RD20 |
| RSZone 2Road 20Potable NetworkA76500-old |  | Zone 2 - Road 20 - Potable Water Network - Buried Valves - Installation (old) | 65d | 2026-08-17 A | 2026-11-01 A | RSZone 2Road 20Potable NetworkA76490-old | 100% |  |  |  |  | Contract Price Original Scope [8329.87 SAR]; Labour [71.12 h]; Buried Valves [4] | 8,329.87 | 8,329.87 | RD20 |
| RSZone 2Road 20Potable NetworkA76490 |  | Zone 2 - Road 20 - Potable Water Network - Buried Valves - Excavation | 1.5d | 2026-11-09 | 2026-11-10 | RSZone 2Road 20Potable NetworkA76490-old |  |  |  | 91.4d | 0d | Contract Price Original Scope [640.76 SAR]; Excavator Operator [15 h]; Dump Truck Operator [15 h]; Labour [5.47 h]; Buried Valves [4] | 640.76 |  | RD20 |
| RSZone 2Road 20Potable NetworkA76500 |  | Zone 2 - Road 20 - Potable Water Network - Buried Valves - Installation | 1.5d | 2026-11-10 | 2026-11-11 | RSZone 2Road 20Potable NetworkA76500-old, RSZone 2Road 20Potable NetworkA76490 |  |  |  | 91.4d | 0d | Contract Price Original Scope [8329.87 SAR]; Labour [71.12 h]; Buried Valves [4] | 8,329.87 |  | RD20 |
| RSZone 2Road 20Potable NetworkA76510 |  | Zone 2 - Road 20 - Potable Water Network - Buried Valves - Surface Box | 3d | 2026-11-12 | 2026-11-15 | RSZone 2Road 20Potable NetworkA76500, RSZone 2Road 20Potable NetworkA76490 |  |  |  | 91.4d | 0d | Labour; Buried Valves [8] |  |  | RD20 |
| RSZone 2Road 20Potable NetworkA76520 |  | Zone 2 - Road 20 - Potable Water Network - Buried Valves - Test | 2d | 2026-11-16 | 2026-11-17 | RSZone 2Road 20Potable NetworkA76510 |  |  |  | 91.4d | 0d | Contract Price Original Scope [5126.07 SAR]; Pump Operator [20 h]; Equipment Operator [20 h]; Labour [43.76 h]; Buried Valves [8] | 5,126.07 |  | RD20 |
| RSZone 2Road 20Potable NetworkA76530 |  | Zone 2 - Road 20 - Potable Water Network - Buried Valves - Backfilling | 2d | 2026-11-18 | 2026-11-19 | RSZone 2Road 20Potable NetworkA76520 |  |  |  | 91.4d | 91.2d | Contract Price Original Scope [2563.04 SAR]; Excavator Operator [20 h]; Compactor Operator [20 h]; Dump Truck Operator [20 h]; Water Truck Operator [20 h]; Labour [21.88 h]; Buried Valves [8] | 2,563.04 |  | RD20 |

| ID | WBS | Activity | Duration | Start | Finish | Predecessors | Complete | Planned start | Planned finish | Total float | Free float | Resources | Cost | Actual cost | MODON |
| --- | --- | --- | --- | --- | --- | --- | --- | --- | --- | --- | --- | --- | --- | --- | --- |
|  | 7 | **FIRE HYDRANT** |  | 2026-03-23 | 2026-11-17 |  |  |  |  |  |  |  |  |  |  |
| RSZone 2Road 20Potable NetworkA77860 |  | Zone 2 - Road 20 - Potable Water Network - FIRE HYDRANT - Excavation | 3d | 2026-03-23 A | 2026-03-25 A | RSZone 2Road 19Potable NetworkA75820 | 100% |  |  |  |  | Contract Price Original Scope [8323.69 SAR]; Excavator Operator [30 h]; Dump Truck Operator [30 h]; Labour [71.06 h]; Fire Hydrant [6] | 8,323.69 | 8,323.69 | RD20 |
| RSZone 2Road 20Potable NetworkA77870 |  | Zone 2 - Road 20 - Potable Water Network - FIRE HYDRANT - Buried Gate Valve Installation | 3d | 2026-03-26 A | 2026-03-29 A | RSZone 2Road 20Potable NetworkA77860 | 100% | 2026-03-26 | 2026-03-30 |  |  | Labour; Fire Hydrant [6] |  |  | RD20 |
| RSZone 2Road 20Potable NetworkA77880 |  | Zone 2 - Road 20 - Potable Water Network - FIRE HYDRANT - Fire Hydrant Installation | 3d | 2026-03-30 A | 2026-04-01 A | RSZone 2Road 20Potable NetworkA77870 | 100% |  |  |  |  | Contract Price Original Scope [60762.9 SAR]; Labour [518.76 h]; Fire Hydrant [6] | 60,762.95 | 60,762.95 | RD20 |
| RSZone 2Road 20Potable NetworkA77890 |  | Zone 2 - Road 20 - Potable Water Network - FIRE HYDRANT - Surface Box | 3.5d | 2026-11-09 | 2026-11-12 | RSZone 2Road 20Potable NetworkA77880 |  |  |  | 93.9d | 0d | Labour; Fire Hydrant [6] |  |  | RD20 |
| RSZone 2Road 20Potable NetworkA77900 |  | Zone 2 - Road 20 - Potable Water Network - FIRE HYDRANT - Test | 2d | 2026-11-12 | 2026-11-15 | RSZone 2Road 20Potable NetworkA77890 |  |  |  | 93.9d | 0d | Contract Price Original Scope [5826.58 SAR]; Pump Operator [20 h]; Equipment Operator [20 h]; Labour [49.74 h]; Fire Hydrant [6] | 5,826.58 |  | RD20 |
| RSZone 2Road 20Potable NetworkA77910 |  | Zone 2 - Road 20 - Potable Water Network - FIRE HYDRANT - Backfilling | 2d | 2026-11-15 | 2026-11-17 | RSZone 2Road 20Potable NetworkA77900 |  |  |  | 93.9d | 93.7d | Contract Price Original Scope [8323.69 SAR]; Excavator Operator [20 h]; Compactor Operator [20 h]; Dump Truck Operator [20 h]; Water Truck Operator [20 h]; Labour [71.06 h]; Fire Hydrant [6] | 8,323.69 |  | RD20 |
|  | 4 | **Lateral Irrigation Network** |  | 2026-10-18 | 2026-11-22 |  |  |  |  |  |  |  |  |  |  |
|  | 3 | **Buried Valves** |  | 2026-10-18 | 2026-11-22 |  |  |  |  |  |  |  |  |  |  |
| RSZone 2Road 20Irrigation NetworkA95360- |  | Zone 2 - Road 20 - Lateral Irrigation Network - Buried Valves - Excavation (old) | 13d | 2026-10-18 A | 2026-11-01 A | RSZone 2Road 19Irrigation NetworkA95310- | 100% |  |  |  |  | Contract Price Original Scope [605.01 SAR]; Excavator Operator [16.87 h]; Dump Truck Operator [16.87 h]; Labour [5.17 h]; Buried Valves [9] | 605.01 | 605.01 | RD20 |
| RSZone 2Road 20Irrigation NetworkA95370- |  | Zone 2 - Road 20 - Lateral Irrigation Network - Buried Valves - Installation (old) | 11d | 2026-10-20 A | 2026-11-01 A | RSZone 2Road 20Irrigation NetworkA95360- | 100% |  |  |  |  | Contract Price Original Scope [7865.14 SAR]; Labour [67.15 h]; Buried Valves [9] | 7,865.14 | 7,865.14 | RD20 |
| RSZone 2Road 20Irrigation NetworkA95360- |  | Zone 2 - Road 20 - Lateral Irrigation Network - Buried Valves - Excavation (old) | 1.31d | 2026-11-11 | 2026-11-12 | RSZone 2Road 20Irrigation NetworkA95360-, RSZone 2Road 19Irrigation NetworkA95310- |  |  |  | 89.71d | 0d | Contract Price Original Scope [471.1 SAR]; Excavator Operator [13.13 h]; Dump Truck Operator [13.13 h]; Labour [4.02 h]; Buried Valves [7] | 471.1 |  | RD20 |
| RSZone 2Road 20Irrigation NetworkA95370- |  | Zone 2 - Road 20 - Lateral Irrigation Network - Buried Valves - Installation (old) | 1.31d | 2026-11-12 | 2026-11-14 | RSZone 2Road 20Irrigation NetworkA95370-, RSZone 2Road 20Irrigation NetworkA95360- |  |  |  | 89.71d | 0d | Contract Price Original Scope [6124.24 SAR]; Labour [52.29 h]; Buried Valves [7] | 6,124.24 |  | RD20 |
| RSZone 2Road 20Irrigation NetworkA95380 |  | Zone 2 - Road 20 - Lateral Irrigation Network - Buried Valves - Surface Box | 3d | 2026-11-14 | 2026-11-17 | RSZone 2Road 20Irrigation NetworkA95370-, RSZone 2Road 20Irrigation NetworkA95360- |  |  |  | 89.71d | 0d | Labour; Buried Valves [16] |  |  | RD20 |
| RSZone 2Road 20Irrigation NetworkA95390 |  | Zone 2 - Road 20 - Lateral Irrigation Network - Buried Valves - Test | 2d | 2026-11-17 | 2026-11-19 | RSZone 2Road 20Irrigation NetworkA95380 |  |  |  | 89.71d | 0d | Contract Price Original Scope [4304.42 SAR]; Pump Operator [20 h]; Equipment Operator [20 h]; Labour [36.75 h]; Buried Valves [16] | 4,304.42 |  | RD20 |
| RSZone 2Road 20Irrigation NetworkA95400 |  | Zone 2 - Road 20 - Lateral Irrigation Network - Buried Valves - Backfilling | 2d | 2026-11-19 | 2026-11-22 | RSZone 2Road 20Irrigation NetworkA95390 |  |  |  | 89.71d | 89.07d | Contract Price Original Scope [2152.21 SAR]; Excavator Operator [20 h]; Compactor Operator [20 h]; Dump Truck Operator [20 h]; Water Truck Operator [20 h]; Labour [18.37 h]; Buried Valves [16] | 2,152.21 |  | RD20 |
|  | 1 | **Telecom** |  | 2026-09-22 | 2027-02-23 |  |  |  |  |  |  |  |  |  |  |
|  | 1 | **Telecom Pipe** |  | 2027-02-06 | 2027-02-23 |  |  |  |  |  |  |  |  |  |  |
| RSZone 2Road 20Telecom NetworkA86400 |  | Zone 2 - Road 20 - Telecom Network - Telecom Pipe - Excavation | 5d | 2027-02-06 | 2027-02-10 | RSZone 2Road 19Telecom NetworkA88470 |  |  |  | 0.4d | 0d | Contract Price Original Scope [7370.33 SAR]; Excavator Operator [30 h]; Dump Truck Operator [30 h]; Labour [62.92 h]; Telecom Pipe [342] | 7,370.33 |  | RD20 |
| RSZone 2Road 20Telecom NetworkA86410 |  | Zone 2 - Road 20 - Telecom Network - Telecom Pipe - Concrete Pouring | 5d | 2027-02-11 | 2027-02-16 | RSZone 2Road 20Telecom NetworkA86400 |  |  |  | 16.4d | 0d | Contract Price Original Scope [51592.3 SAR]; Crane Operator [13 h]; Pump Operator [13 h]; Equipment Operator [13 h]; Labour [440.47 h]; Telecom Pipe [342] | 51,592.29 |  | RD20 |
| RSZone 2Road 20Telecom NetworkA86420 |  | Zone 2 - Road 20 - Telecom Network - Telecom Pipe - Test | 2d | 2027-02-17 | 2027-02-18 | RSZone 2Road 20Telecom NetworkA86410 |  |  |  | 16.4d | 0d | Contract Price Original Scope [7370.33 SAR]; Pump Operator [20 h]; Equipment Operator [20 h]; Labour [62.92 h]; Telecom Pipe [342] | 7,370.33 |  | RD20 |
| RSZone 2Road 20Telecom NetworkA86430 |  | Zone 2 - Road 20 - Telecom Network - Telecom Pipe - Backfilling | 2d | 2027-02-20 | 2027-02-23 | RSZone 2Road 20Telecom NetworkA86420 |  |  |  | 16.4d | 16d | Contract Price Original Scope [7370.33 SAR]; Excavator Operator [20 h]; Compactor Operator [20 h]; Dump Truck Operator [20 h]; Water Truck Operator [20 h]; Labour [62.92 h]; Telecom Pipe [342] | 7,370.33 |  | RD20 |
|  | 2 | **TELECOM MANHOLE** |  | 2026-09-22 | 2026-12-02 |  |  |  |  |  |  |  |  |  |  |
| RSZone 2Road 20Telecom NetworkA86480-old |  | Zone 2 - Road 20 - Telecom Network - TELECOM MANHOLE - Manhole Installation (old) | 34d | 2026-09-22 A | 2026-11-01 A | RSZone 2Road 19Telecom NetworkA88520-old | 100% |  |  |  |  | Contract Price Original Scope [28515.3 SAR]; Crane Operator [11.4 h]; Boom Truck Operator [11.4 h]; Equipment Operator [11.4 h]; Labour [243.45 h]; Telecom Manhole [1.9] | 28,515.33 | 28,515.33 | RD20 |
| RSZone 2Road 20Telecom NetworkA86480 |  | Zone 2 - Road 20 - Telecom Network - TELECOM MANHOLE - Manhole Installation | 1d | 2026-12-02 | 2026-12-02 | RSZone 2Road 20Telecom NetworkA86480-old, RSZone 2Road 19Telecom NetworkA88520 |  |  |  | 76.4d | 0d | Contract Price Original Scope [1500.81 SAR]; Crane Operator [0.6 h]; Boom Truck Operator [0.6 h]; Equipment Operator [0.6 h]; Labour [12.81 h]; Telecom Manhole [0.1] | 1,500.81 |  | RD20 |

| ID | WBS | Activity | Duration | Start | Finish | Predecessors | Complete | Remaining | Planned start | Planned finish | Total float | Free float | Resources | Cost | Actual cost | MODON |
| --- | --- | --- | --- | --- | --- | --- | --- | --- | --- | --- | --- | --- | --- | --- | --- | --- |
|  | 13 | **Zone 3** |  | 2026-03-26 | 2027-04-03 |  |  |  |  |  |  |  |  |  |  |  |
|  | 11 | **Road 3** |  | 2026-03-29 | 2027-04-03 |  |  |  |  |  |  |  |  |  |  |  |
|  | 5 | **Storm Network** |  | 2027-03-30 | 2027-04-03 |  |  |  |  |  |  |  |  |  |  |  |
|  | 8 | **Manhole** |  | 2027-03-30 | 2027-04-03 |  |  |  |  |  |  |  |  |  |  |  |
| RSZone 3Road 03Storm NetworkA93550 |  | Zone 3 - Road 3 - Storm Network - Manhole - COVER INSTALLATION | 3d | 2027-03-30 | 2027-04-03 | RSZone 2Road 20Storm NetworkA93480 SS |  |  |  |  | 14.4d | 0d | Contract Price Original Scope [36112.1 SAR]; Crane Operator [7 h]; Boom Truck Operator [7 h]; Equipment Operator [7 h]; Labour [308.31 h]; Manholes GRP (new + DI cover only) [13] | 36,112.1 |  | RD3 |
|  | 3 | **Potable Water Network** |  | 2026-04-21 | 2026-12-19 |  |  |  |  |  |  |  |  |  |  |  |
|  | 1 | **Buried Valves** |  | 2026-04-21 | 2026-11-17 |  |  |  |  |  |  |  |  |  |  |  |
| RSZone 3Road 03Potable NetworkA82640 |  | Zone 3 - Road 3 - Potable Water Network - Buried Valves - Excavation | 5d | 2026-04-21 A | 2026-04-26 A | RSZone 2Road 20Potable NetworkA77880 | 100% |  |  |  |  |  | Contract Price Original Scope [800.95 SAR]; Excavator Operator [30 h]; Dump Truck Operator [30 h]; Labour [6.84 h]; Buried Valves [5] | 800.95 | 800.95 | RD3 |
| RSZone 3Road 03Potable NetworkA82650 |  | Zone 3 - Road 3 - Potable Water Network - Buried Valves - Installation | 2d | 2026-04-27 A | 2026-04-28 A | RSZone 3Road 03Potable NetworkA82640 | 100% |  |  |  |  |  | Contract Price Original Scope [10412.3 SAR]; Labour [88.9 h]; Buried Valves [5] | 10,412.33 | 10,412.33 | RD3 |
| RSZone 3Road 03Potable NetworkA82660 |  | Zone 3 - Road 3 - Potable Water Network - Buried Valves - Surface Box | 3.1d | 2026-11-09 | 2026-11-12 | RSZone 3Road 03Potable NetworkA82650 |  |  |  |  | 94.3d | 0d | Labour; Buried Valves [5] |  |  | RD3 |
| RSZone 3Road 03Potable NetworkA82670 |  | Zone 3 - Road 3 - Potable Water Network - Buried Valves - Test | 2d | 2026-11-12 | 2026-11-15 | RSZone 3Road 03Potable NetworkA82660 |  |  |  |  | 94.3d | 0d | Contract Price Original Scope [3203.8 SAR]; Pump Operator [20 h]; Equipment Operator [20 h]; Labour [27.35 h]; Buried Valves [5] | 3,203.8 |  | RD3 |
| RSZone 3Road 03Potable NetworkA82680 |  | Zone 3 - Road 3 - Potable Water Network - Buried Valves - Backfilling | 2d | 2026-11-15 | 2026-11-17 | RSZone 3Road 03Potable NetworkA82670 |  |  |  |  | 94.3d | 94.1d | Contract Price Original Scope [1601.9 SAR]; Excavator Operator [20 h]; Compactor Operator [20 h]; Dump Truck Operator [20 h]; Water Truck Operator [20 h]; Labour [13.68 h]; Buried Valves [5] | 1,601.9 |  | RD3 |
|  | 7 | **FIRE HYDRANT** |  | 2026-05-10 | 2026-11-17 |  |  |  |  |  |  |  |  |  |  |  |
| RSZone 3Road 03Potable NetworkA83890 |  | Zone 3 - Road 3 - Potable Water Network - FIRE HYDRANT - Excavation | 3d | 2026-05-10 A | 2026-05-12 A | RSZone 3Road 03Potable NetworkA82650 | 100% |  |  |  |  |  | Contract Price Original Scope [5549.13 SAR]; Excavator Operator [30 h]; Dump Truck Operator [30 h]; Labour [47.38 h]; Fire Hydrant [4] | 5,549.13 | 5,549.13 | RD3 |
| RSZone 3Road 03Potable NetworkA83900 |  | Zone 3 - Road 3 - Potable Water Network - FIRE HYDRANT - Buried Gate Valve Installation | 4d | 2026-05-13 A | 2026-05-17 A | RSZone 3Road 03Potable NetworkA83890 | 100% |  |  |  |  |  | Labour; Fire Hydrant [4] |  |  | RD3 |
| RSZone 3Road 03Potable NetworkA83910 |  | Zone 3 - Road 3 - Potable Water Network - FIRE HYDRANT - Fire Hydrant Installation | 2d | 2026-05-18 A | 2026-05-19 A | RSZone 3Road 03Potable NetworkA83900 | 100% |  |  |  |  |  | Contract Price Original Scope [40508.6 SAR]; Labour [345.84 h]; Fire Hydrant [4] | 40,508.63 | 40,508.63 | RD3 |
| RSZone 3Road 03Potable NetworkA83920 |  | Zone 3 - Road 3 - Potable Water Network - FIRE HYDRANT - Surface Box | 3.1d | 2026-11-09 | 2026-11-12 | RSZone 3Road 03Potable NetworkA83910 |  |  |  |  | 94.3d | 0d | Labour; Fire Hydrant [4] |  |  | RD3 |
| RSZone 3Road 03Potable NetworkA83930 |  | Zone 3 - Road 3 - Potable Water Network - FIRE HYDRANT - Test | 2d | 2026-11-12 | 2026-11-15 | RSZone 3Road 03Potable NetworkA83920 |  |  |  |  | 94.3d | 0d | Contract Price Original Scope [3884.39 SAR]; Pump Operator [20 h]; Equipment Operator [20 h]; Labour [33.16 h]; Fire Hydrant [4] | 3,884.39 |  | RD3 |
| RSZone 3Road 03Potable NetworkA83940 |  | Zone 3 - Road 3 - Potable Water Network - FIRE HYDRANT - Backfilling | 2d | 2026-11-15 | 2026-11-17 | RSZone 3Road 03Potable NetworkA83930 |  |  |  |  | 94.3d | 94.1d | Contract Price Original Scope [5549.13 SAR]; Excavator Operator [20 h]; Compactor Operator [20 h]; Dump Truck Operator [20 h]; Water Truck Operator [20 h]; Labour [47.38 h]; Fire Hydrant [4] | 5,549.13 |  | RD3 |
|  | 8 | **Pump Room & Tank** |  | 2026-08-30 | 2026-12-19 |  |  |  |  |  |  |  |  |  |  |  |
| RSZone 3Road 03Potable NetworkA84370-old |  | Zone 3 - Road 3 - Potable Water Network - Pump Room & Tank - Fire Fighting Pump (old) | 54d | 2026-08-30 A | 2026-11-01 A | RSZone 3Road 03Potable NetworkA84400-old | 100% |  |  |  |  |  | Contract Price Original Scope [77260.3 SAR]; Labour [659.61 h]; Pump Room & Tank - Fire Fighting & Water Pumps [0.2] | 77,260.3 | 77,260.3 | RD3 |
| RSZone 3Road 03Potable NetworkA84400-old |  | Zone 3 - Road 3 - Potable Water Network - Pump Room & Tank - Pump Building (old) | 52d | 2026-09-01 A | 2026-11-01 A | RSZone 3Road 03Potable NetworkA84420-old | 100% |  |  |  |  |  | Contract Price Original Scope [31444.3 SAR]; Crane Operator [0.9 h]; Boom Truck Operator [0.9 h]; Equipment Operator [0.9 h]; Labour [268.46 h]; Pump Room & Tank - Pump Building + Flow meter chamber [0.1] | 31,444.29 | 31,444.29 | RD3 |
| RSZone 3Road 03Potable NetworkA84410-old |  | Zone 3 - Road 3 - Potable Water Network - Pump Room & Tank - Water Tank (old) | 50d | 2026-09-03 A | 2026-11-01 A | RSZone 3Road 03Potable NetworkA83890 | 100% |  | 2026-09-03 | 2026-11-02 |  |  | Contract Price Original Scope [6610275 SAR]; Crane Operator [21.07 h]; Boom Truck Operator [21.07 h]; Equipment Operator [21.07 h]; Labour [56435.1 h]; Pump Room & Tank - Water Tank (remaining work) [0.78] | 6,610,275.45 | 6,610,275.45 | RD3 |
| RSZone 3Road 03Potable NetworkA84420-old |  | Zone 3 - Road 3 - Potable Water Network - Pump Room & Tank - Generator (old) | 47d | 2026-09-07 A | 2026-11-01 A | RSZone 3Road 03Potable NetworkA84430-old | 100% |  |  |  |  |  | Contract Price Original Scope [947225 SAR]; Crane Operator [2.17 h]; Boom Truck Operator [2.17 h]; Equipment Operator [2.17 h]; Labour [8086.91 h]; Pump Room & Tank - Generators [0.31] | 947,224.54 | 947,224.54 | RD3 |
| RSZone 3Road 03Potable NetworkA84430-old |  | Zone 3 - Road 3 - Potable Water Network - Pump Room & Tank - Coloration System (old) | 45d | 2026-09-09 A | 2026-11-01 A | RSZone 3Road 03Potable NetworkA84440-old | 100% |  |  |  |  |  | Contract Price Original Scope [510786 SAR]; Labour [4360.82 h]; Pump Room & Tank - Chlorination System [0.6] | 510,785.64 | 510,785.64 | RD3 |
| RSZone 3Road 03Potable NetworkA84440-old |  | Zone 3 - Road 3 - Potable Water Network - Pump Room & Tank - Street Lighting (old) | 44d | 2026-09-10 A | 2026-11-01 A | RSZone 3Road 03Potable NetworkA84410-old | 100% |  | 2026-09-10 | 2026-11-02 |  |  | Contract Price Original Scope [449138 SAR]; Crane Operator [9.12 h]; Boom Truck Operator [9.12 h]; Equipment Operator [9.12 h]; Labour [3834.51 h]; Pump Room & Tank - Street Lighting [0.57] | 449,138.33 | 449,138.33 | RD3 |
| RSZone 3Road 03Potable NetworkA84410 |  | Zone 3 - Road 3 - Potable Water Network - Pump Room & Tank - Water Tank | 1d | 2026-11-03 A | 2026-11-09 | RSZone 3Road 03Potable NetworkA84410-old | 80% | 0.2d | 2026-11-02 | 2026-11-02 | 89.33d | 0d | Contract Price Original Scope [1861755 SAR]; Crane Operator [5.93 h]; Boom Truck Operator [5.93 h]; Equipment Operator [5.93 h]; Labour [15894.7 h]; Pump Room & Tank - Water Tank (remaining work) [0.22] | 1,861,754.79 | 1,489,403.83 | RD3 |
| RSZone 3Road 03Potable NetworkA84440 |  | Zone 3 - Road 3 - Potable Water Network - Pump Room & Tank - Street Lighting | 1d | 2026-11-03 A | 2026-11-09 | RSZone 3Road 03Potable NetworkA84440-old, RSZone 3Road 03Potable NetworkA84410 SS | 61% | 0.39d | 2026-11-03 | 2026-11-03 | 89.33d | 0d | Contract Price Original Scope [339112 SAR]; Crane Operator [6.88 h]; Boom Truck Operator [6.88 h]; Equipment Operator [6.88 h]; Labour [2895.16 h]; Pump Room & Tank - Street Lighting [0.43] | 339,111.75 | 206,858.17 | RD3 |
| RSZone 3Road 03Potable NetworkA84430 |  | Zone 3 - Road 3 - Potable Water Network - Pump Room & Tank - Coloration System | 1.2d | 2026-11-09 | 2026-11-10 | RSZone 3Road 03Potable NetworkA84430-old, RSZone 3Road 03Potable NetworkA84440 |  |  |  |  | 89.33d | 0d | Contract Price Original Scope [340524 SAR]; Labour [2907.22 h]; Pump Room & Tank - Chlorination System [0.4] | 340,523.76 |  | RD3 |
| RSZone 3Road 03Potable NetworkA84420 |  | Zone 3 - Road 3 - Potable Water Network - Pump Room & Tank - Generator | 1.88d | 2026-11-10 | 2026-11-12 | RSZone 3Road 03Potable NetworkA84420-old, RSZone 3Road 03Potable NetworkA84430 |  |  |  |  | 89.33d | 0d | Contract Price Original Scope [8233567 SAR]; Crane Operator [18.83 h]; Boom Truck Operator [18.83 h]; Equipment Operator [18.83 h]; Labour [70293.9 h]; Pump Room & Tank - Generators [2.69] | 8,233,567.16 |  | RD3 |
| RSZone 3Road 03Potable NetworkA84400 |  | Zone 3 - Road 3 - Potable Water Network - Pump Room & Tank - Pump Building | 2.7d | 2026-11-12 | 2026-11-16 | RSZone 3Road 03Potable NetworkA84400-old, RSZone 3Road 03Potable NetworkA84420 |  |  |  |  | 89.33d | 0d | Contract Price Original Scope [282999 SAR]; Crane Operator [8.1 h]; Boom Truck Operator [8.1 h]; Equipment Operator [8.1 h]; Labour [2416.1 h]; Pump Room & Tank - Pump Building + Flow meter chamber [0.9] | 282,998.61 |  | RD3 |
| RSZone 3Road 03Potable NetworkA84370 |  | Zone 3 - Road 3 - Potable Water Network - Pump Room & Tank - Fire Fighting Pump | 2.9d | 2026-11-16 | 2026-11-19 | RSZone 3Road 03Potable NetworkA84370-old, RSZone 3Road 03Potable NetworkA84400 |  |  |  |  | 89.33d | 22.93d | Contract Price Original Scope [2240549 SAR]; Labour [19128.7 h]; Pump Room & Tank - Fire Fighting & Water Pumps [5.8] | 2,240,548.65 |  | RD3 |
| RSZone 3Road 03Potable NetworkA84380 |  | Zone 3 - Road 3 - Potable Water Network - Pump Room & Tank - Surge vessel Tank | 3d | 2026-12-16 | 2026-12-19 | Procurment.Dos.4, RSZone 3Road 03Potable NetworkA84370, RSZone 3Road 03Potable NetworkA84400, RSZone 3Road 03Potable NetworkA84410, RSZone 3Road 03Potable NetworkA84420, RSZone 3Road 03Potable NetworkA84430, RSZone 3Road 03Potable NetworkA84440 |  |  |  |  | 66.4d | 66.2d | Contract Price Original Scope [46349.7 SAR]; Labour [395.71 h]; Pump Room & Tank - Surge Vessel [1] | 46,349.72 |  | RD3 |

| ID | WBS | Activity | Duration | Start | Finish | Predecessors | Complete | Total float | Free float | Resources | Cost | Actual cost | MODON |
| --- | --- | --- | --- | --- | --- | --- | --- | --- | --- | --- | --- | --- | --- |
|  | 4 | **Lateral Irrigation Network** |  | 2026-03-29 | 2027-01-19 |  |  |  |  |  |  |  |  |
|  | 2 | **Tees** |  | 2026-11-22 | 2026-11-25 |  |  |  |  |  |  |  |  |
| RSZone 3Road 03Irrigation NetworkA86620 |  | Zone 3 - Road 3 - Lateral Irrigation Network - Tees - Installation | 3d | 2026-11-22 | 2026-11-25 | RSZone 2Road 18Irrigation NetworkA93360 |  | 85.47d | 0d | Contract Price Original Scope [10752.4 SAR]; Labour [91.8 h]; Fittings - Tees (all sizes) [7] | 10,752.42 |  | RD3 |
|  | 5 | **Thrust Block** |  | 2026-11-25 | 2026-11-26 |  |  |  |  |  |  |  |  |
| RSZone 3Road 03Irrigation NetworkA80770 |  | Zone 3 - Road 3 - Lateral Irrigation Network - Thrust Block - Thrust Block | 1.3d | 2026-11-25 | 2026-11-26 | RSZone 3Road 03Irrigation NetworkA86620 |  | 85.47d | 84.83d | Contract Price Original Scope [7152.32 SAR]; Crane Operator [13 h]; Pump Operator [13 h]; Equipment Operator [13 h]; Labour [61.06 h]; Thrust Blocks [7] | 7,152.32 |  | RD3 |
|  | 1 | **Buried Valves** |  | 2026-03-29 | 2026-11-16 |  |  |  |  |  |  |  |  |
| RSZone 3Road 03Irrigation NetworkA79790 |  | Zone 3 - Road 3 - Lateral Irrigation Network - Buried Valves - Excavation | 4.9d | 2026-03-29 A | 2026-04-02 A | RSZone 2Road 16Irrigation NetworkA71920 | 100% |  |  | Contract Price Original Scope [874.34 SAR]; Excavator Operator [30 h]; Dump Truck Operator [30 h]; Labour [7.46 h]; Buried Valves [13] | 874.34 | 874.34 | RD3 |
| RSZone 3Road 03Irrigation NetworkA79800 |  | Zone 3 - Road 3 - Lateral Irrigation Network - Buried Valves - Installation | 3d | 2026-04-05 A | 2026-04-07 A | RSZone 3Road 03Irrigation NetworkA79790, RSZone 3Road 03Irrigation NetworkA79790 FF | 100% |  |  | Contract Price Original Scope [11366.4 SAR]; Labour [97.04 h]; Buried Valves [13] | 11,366.37 | 11,366.37 | RD3 |
| RSZone 3Road 03Irrigation NetworkA79810 |  | Zone 3 - Road 3 - Lateral Irrigation Network - Buried Valves - Surface Box | 3d | 2026-11-09 | 2026-11-11 | RSZone 3Road 03Irrigation NetworkA79800 |  | 94.4d | 0d | Labour; Buried Valves [13] |  |  | RD3 |
| RSZone 3Road 03Irrigation NetworkA79820 |  | Zone 3 - Road 3 - Lateral Irrigation Network - Buried Valves - Test | 2d | 2026-11-12 | 2026-11-14 | RSZone 3Road 03Irrigation NetworkA79810 |  | 94.4d | 0d | Contract Price Original Scope [3497.34 SAR]; Pump Operator [20 h]; Equipment Operator [20 h]; Labour [29.86 h]; Buried Valves [13] | 3,497.34 |  | RD3 |
| RSZone 3Road 03Irrigation NetworkA79830 |  | Zone 3 - Road 3 - Lateral Irrigation Network - Buried Valves - Backfilling | 2d | 2026-11-15 | 2026-11-16 | RSZone 3Road 03Irrigation NetworkA79820 |  | 94.4d | 93.76d | Contract Price Original Scope [1748.67 SAR]; Excavator Operator [20 h]; Compactor Operator [20 h]; Dump Truck Operator [20 h]; Water Truck Operator [20 h]; Labour [14.93 h]; Buried Valves [13] | 1,748.67 |  | RD3 |
|  | 3 | **Valve Champer** |  | 2026-06-17 | 2027-01-19 |  |  |  |  |  |  |  |  |
|  | 1 | **Isolation Champer** |  | 2026-12-23 | 2027-01-19 |  |  |  |  |  |  |  |  |
| RSZone 3Road 03Irrigation NetworkA79150 |  | Zone 3 - Road 3 - Lateral Irrigation Network - Isolation Champer - Excavation | 2.8d | 2026-12-23 | 2026-12-27 | RSZone 2Road 01Irrigation NetworkA69990 SS |  | 0.64d | 0d | Labour; Isolation Chambers |  |  | RD3 |
| RSZone 3Road 03Irrigation NetworkA79160 |  | Zone 3 - Road 3 - Lateral Irrigation Network - Isolation Champer - Footings | 3d | 2026-12-27 | 2026-12-30 | RSZone 3Road 03Irrigation NetworkA79150 |  | 40.34d | 0d | Labour; Isolation Chambers |  |  | RD3 |
| RSZone 3Road 03Irrigation NetworkA79180 |  | Zone 3 - Road 3 - Lateral Irrigation Network - Isolation Champer - Slab | 3d | 2026-12-30 | 2027-01-03 | RSZone 3Road 03Irrigation NetworkA79160 |  | 40.34d | 0d | Contract Price Original Scope [14868.8 SAR]; Labour [126.94 h]; Isolation Chambers [1] | 14,868.77 |  | RD3 |
| RSZone 3Road 03Irrigation NetworkA79170 |  | Zone 3 - Road 3 - Lateral Irrigation Network - Isolation Champer - Walls | 3d | 2027-01-03 | 2027-01-06 | RSZone 3Road 03Irrigation NetworkA79180 |  | 40.34d | 0d | Labour; Isolation Chambers |  |  | RD3 |
| RSZone 3Road 03Irrigation NetworkA79200 |  | Zone 3 - Road 3 - Lateral Irrigation Network - Isolation Champer - Internal Isolation | 3d | 2027-01-06 | 2027-01-10 | RSZone 3Road 03Irrigation NetworkA79170 |  | 40.34d | 0d | Contract Price Original Scope [12744.7 SAR]; Labour [108.81 h]; Isolation Chambers [6] | 12,744.66 |  | RD3 |
| RSZone 3Road 03Irrigation NetworkA79190 |  | Zone 3 - Road 3 - Lateral Irrigation Network - Isolation Champer - D.I Cover | 3d | 2027-01-10 | 2027-01-13 | RSZone 3Road 03Irrigation NetworkA79200 |  | 40.34d | 0d | Contract Price Original Scope [25489.3 SAR]; Labour [217.61 h]; Isolation Chambers [6] | 25,489.33 |  | RD3 |
| RSZone 3Road 03Irrigation NetworkA79210 |  | Zone 3 - Road 3 - Lateral Irrigation Network - Isolation Champer - External Isolation | 2.8d | 2027-01-13 | 2027-01-17 | RSZone 3Road 03Irrigation NetworkA79190 |  | 40.34d | 0d | Labour; Isolation Chambers |  |  | RD3 |
| RSZone 3Road 03Irrigation NetworkA79220 |  | Zone 3 - Road 3 - Lateral Irrigation Network - Isolation Champer - Backfilling | 2d | 2027-01-17 | 2027-01-19 | RSZone 3Road 03Irrigation NetworkA79210 |  | 40.34d | 39.7d | Excavator Operator [20 h]; Compactor Operator [20 h]; Dump Truck Operator [20 h]; Water Truck Operator [20 h]; Labour; Isolation Chambers |  |  | RD3 |
|  | 2 | **Air Valves Champer** |  | 2026-06-17 | 2026-11-19 |  |  |  |  |  |  |  |  |
| RSZone 3Road 03Irrigation NetworkA79230 |  | Zone 3 - Road 3 - Lateral Irrigation Network - Air Valves Champer - Excavation | 4d | 2026-06-17 A | 2026-06-21 A | RSZone 3Road 03Irrigation NetworkA79800 | 100% |  |  | Contract Price Original Scope [1152.77 SAR]; Labour [9.84 h]; Air Valve Chambers [1] | 1,152.77 | 1,152.77 | RD3 |
| RSZone 3Road 03Irrigation NetworkA79240 |  | Zone 3 - Road 3 - Lateral Irrigation Network - Air Valves Champer - Footings | 3.9d | 2026-06-22 A | 2026-06-25 A | RSZone 3Road 03Irrigation NetworkA79230 | 100% |  |  | Contract Price Original Scope [3458.31 SAR]; Labour [29.53 h]; Air Valve Chambers [1] | 3,458.31 | 3,458.31 | RD3 |
| RSZone 3Road 03Irrigation NetworkA79250 |  | Zone 3 - Road 3 - Lateral Irrigation Network - Air Valves Champer - Walls | 4.9d | 2026-06-28 A | 2026-07-02 A | RSZone 3Road 03Irrigation NetworkA79240 | 100% |  |  | Contract Price Original Scope [4611.08 SAR]; Labour [39.37 h]; Air Valve Chambers [1] | 4,611.08 | 4,611.08 | RD3 |
| RSZone 3Road 03Irrigation NetworkA79290 |  | Zone 3 - Road 3 - Lateral Irrigation Network - Air Valves Champer - External Isolation | 3.9d | 2026-07-06 A | 2026-07-09 A | RSZone 3Road 03Irrigation NetworkA79250 | 100% |  |  | Contract Price Original Scope [1152.77 SAR]; Labour [9.84 h]; Air Valve Chambers [1] | 1,152.77 | 1,152.77 | RD3 |
| RSZone 3Road 03Irrigation NetworkA79280- |  | Zone 3 - Road 3 - Lateral Irrigation Network - Air Valves Champer - Internal Isolation (old) | 51d | 2026-09-02 A | 2026-11-01 A | RSZone 3Road 03Irrigation NetworkA79290 | 100% |  |  | Contract Price Original Scope [1152.77 SAR]; Labour [9.84 h]; Air Valve Chambers [1] | 1,152.77 | 1,152.77 | RD3 |
| RSZone 3Road 03Irrigation NetworkA79280- |  | Zone 3 - Road 3 - Lateral Irrigation Network - Air Valves Champer - Internal Isolation (old) | 1.5d | 2026-11-09 | 2026-11-10 | RSZone 3Road 03Irrigation NetworkA79280- |  | 91.9d | 0d | Contract Price Original Scope [1152.77 SAR]; Labour [9.84 h]; Air Valve Chambers [1] | 1,152.77 |  | RD3 |
| RSZone 3Road 03Irrigation NetworkA79260 |  | Zone 3 - Road 3 - Lateral Irrigation Network - Air Valves Champer - Slab | 3d | 2026-11-10 | 2026-11-14 | RSZone 3Road 03Irrigation NetworkA79280- |  | 91.9d | 0d | Contract Price Original Scope [16138.8 SAR]; Labour [137.78 h]; Air Valve Chambers [2] | 16,138.8 |  | RD3 |
| RSZone 3Road 03Irrigation NetworkA79270 |  | Zone 3 - Road 3 - Lateral Irrigation Network - Air Valves Champer - D.I Cover | 3d | 2026-11-14 | 2026-11-17 | RSZone 3Road 03Irrigation NetworkA79260 |  | 91.9d | 0d | Contract Price Original Scope [4611.08 SAR]; Labour [39.37 h]; Air Valve Chambers [2] | 4,611.08 |  | RD3 |
| RSZone 3Road 03Irrigation NetworkA79300 |  | Zone 3 - Road 3 - Lateral Irrigation Network - Air Valves Champer - Backfilling | 2d | 2026-11-17 | 2026-11-19 | RSZone 3Road 03Irrigation NetworkA79270 |  | 91.9d | 91.26d | Contract Price Original Scope [1152.77 SAR]; Excavator Operator [20 h]; Compactor Operator [20 h]; Dump Truck Operator [20 h]; Water Truck Operator [20 h]; Labour [9.84 h]; Air Valve Chambers [1] | 1,152.77 |  | RD3 |

| ID | WBS | Activity | Duration | Start | Finish | Predecessors | Complete | Planned start | Planned finish | Total float | Free float | Resources | Cost | Actual cost | MODON |
| --- | --- | --- | --- | --- | --- | --- | --- | --- | --- | --- | --- | --- | --- | --- | --- |
|  | 2 | **Local Road** |  | 2026-11-09 | 2027-02-01 |  |  |  |  |  |  |  |  |  |  |
| RSZone 3Road 03Local RoadA86580 |  | Zone 3 - Road 3 - Lateral Irrigation Network - Local Road - MC1 | 21d | 2026-11-09 | 2026-12-02 | Milestone.1 |  |  |  | 0.4d | 0d | Contract Price Original Scope [769.77 SAR]; Grader Operator [200 h]; Paver Operator [200 h]; Compactor Operator [200 h]; Dozer Operator [200 h]; Water Truck Operator [200 h]; Labour [6.57 h]; Local Road - MC1 [142] | 769.77 |  | RD3 |
| RSZone 3Road 03Local RoadA86590 |  | Zone 3 - Road 3 - Lateral Irrigation Network - Local Road - Binder Course | 21d | 2026-12-09 | 2027-01-02 | RSZone 3Road 03Local RoadA86580 FS+5d |  |  |  | 0.4d | 0d | Contract Price Original Scope [46800.5 SAR]; Grader Operator [200 h]; Paver Operator [200 h]; Compactor Operator [200 h]; Dozer Operator [200 h]; Water Truck Operator [200 h]; Labour [399.56 h]; Local Road - Binder Course [46] | 46,800.49 |  | RD3 |
| RSZone 3Road 03Local RoadA86600 |  | Zone 3 - Road 3 - Lateral Irrigation Network - Local Road - Wearing Couse | 21d | 2027-01-09 | 2027-02-01 | RSZone 3Road 03Local RoadA86590 FS+5d |  |  |  | 0.4d | 0d | Contract Price Original Scope [73204 SAR]; Grader Operator [240 h]; Paver Operator [240 h]; Compactor Operator [240 h]; Dozer Operator [240 h]; Water Truck Operator [240 h]; Labour [624.98 h]; Local Road - Wearing Course [73] | 73,203.97 |  | RD3 |
|  | 1 | **Telecom** |  | 2026-09-16 | 2026-12-13 |  |  |  |  |  |  |  |  |  |  |
|  | 1 | **Telecom Pipe** |  | 2026-09-16 | 2026-12-13 |  |  |  |  |  |  |  |  |  |  |
| RSZone 3Road 03Telecom NetworkA86490-old |  | Zone 3 - Road 3 - Telecom Network - Telecom Pipe - Excavation (old) | 39d | 2026-09-16 A | 2026-11-01 A | RSZone 2Road 20Telecom NetworkA86480-old | 100% |  |  |  |  | Contract Price Original Scope [481.53 SAR]; Excavator Operator [0.62 h]; Dump Truck Operator [0.62 h]; Labour [4.11 h]; Telecom Pipe [22.34] | 481.53 | 481.53 | RD3 |
| RSZone 3Road 03Telecom NetworkA86500-old |  | Zone 3 - Road 3 - Telecom Network - Telecom Pipe - Concrete Pouring (old) | 36d | 2026-09-20 A | 2026-11-01 A | RSZone 3Road 03Telecom NetworkA86490-old | 100% |  |  |  |  | Contract Price Original Scope [3363.67 SAR]; Crane Operator [0.27 h]; Pump Operator [0.27 h]; Equipment Operator [0.27 h]; Labour [28.72 h]; Telecom Pipe [22.3] | 3,363.67 | 3,363.67 | RD3 |
| RSZone 3Road 03Telecom NetworkA86490 |  | Zone 3 - Road 3 - Telecom Network - Telecom Pipe - Excavation | 2.94d | 2026-12-03 | 2026-12-06 | RSZone 3Road 03Telecom NetworkA86490-old, RSZone 2Road 20Telecom NetworkA86480 |  |  |  | 77.19d | 0d | Contract Price Original Scope [22944 SAR]; Excavator Operator [29.38 h]; Dump Truck Operator [29.38 h]; Labour [195.88 h]; Telecom Pipe [1064.66] | 22,944.05 |  | RD3 |
| RSZone 3Road 03Telecom NetworkA86500 |  | Zone 3 - Road 3 - Telecom Network - Telecom Pipe - Concrete Pouring | 1.27d | 2026-12-06 | 2026-12-08 | RSZone 3Road 03Telecom NetworkA86500-old, RSZone 3Road 03Telecom NetworkA86490 |  |  |  | 77.19d | 0d | Contract Price Original Scope [160615 SAR]; Crane Operator [12.73 h]; Pump Operator [12.73 h]; Equipment Operator [12.73 h]; Labour [1371.25 h]; Telecom Pipe [1064.7] | 160,615.34 |  | RD3 |
| RSZone 3Road 03Telecom NetworkA86510 |  | Zone 3 - Road 3 - Telecom Network - Telecom Pipe - Test | 2d | 2026-12-08 | 2026-12-10 | RSZone 3Road 03Telecom NetworkA86500 |  |  |  | 77.19d | 0d | Contract Price Original Scope [23425.6 SAR]; Pump Operator [20 h]; Equipment Operator [20 h]; Labour [200 h]; Telecom Pipe [1087] | 23,425.57 |  | RD3 |
| RSZone 3Road 03Telecom NetworkA86520 |  | Zone 3 - Road 3 - Telecom Network - Telecom Pipe - Backfilling | 2d | 2026-12-10 | 2026-12-13 | RSZone 3Road 03Telecom NetworkA86500, RSZone 3Road 03Telecom NetworkA86510, RSZone 3Road 03Telecom NetworkA86490 |  |  |  | 77.19d | 76.79d | Contract Price Original Scope [23425.6 SAR]; Excavator Operator [20 h]; Compactor Operator [20 h]; Dump Truck Operator [20 h]; Water Truck Operator [20 h]; Labour [200 h]; Telecom Pipe [1087] | 23,425.57 |  | RD3 |
|  | 12 | **Telecom Duct** |  | 2026-09-20 | 2026-12-12 |  |  |  |  |  |  |  |  |  |  |
| RSZone 3Road 03Telecom NetworkA86530-old |  | Zone 3 - Road 3 - Telecom Network - Telecom Duct - Excavation (old) | 36d | 2026-09-20 A | 2026-11-01 A | RSZone 3Road 03Telecom NetworkA86490-old | 100% |  |  |  |  | Contract Price Original Scope [489.83 SAR]; Excavator Operator [29.35 h]; Dump Truck Operator [29.35 h]; Labour [4.18 h]; Telecom Duct (Road Crossing) [22.5] | 489.83 | 489.83 | RD3 |
| RSZone 3Road 03Telecom NetworkA86540-old |  | Zone 3 - Road 3 - Telecom Network - Telecom Duct - Concrete Pouring (old) | 34d | 2026-09-22 A | 2026-11-01 A | RSZone 3Road 03Telecom NetworkA86530-old | 100% |  |  |  |  | Contract Price Original Scope [6853.76 SAR]; Crane Operator [11.73 h]; Pump Operator [11.73 h]; Equipment Operator [11.73 h]; Labour [58.51 h]; Telecom Duct (Road Crossing) [22.49] | 6,853.76 | 6,853.76 | RD3 |
| RSZone 3Road 03Telecom NetworkA86530 |  | Zone 3 - Road 3 - Telecom Network - Telecom Duct - Excavation | 1d | 2026-11-02 A | 2026-11-05 A | RSZone 3Road 03Telecom NetworkA86530-old, RSZone 3Road 03Telecom NetworkA86490-old | 100% | 2026-11-29 | 2026-11-30 |  |  | Contract Price Original Scope [10.85 SAR]; Excavator Operator [0.65 h]; Dump Truck Operator [0.65 h]; Labour [0.09 h]; Telecom Duct (Road Crossing) [0.5] | 10.85 | 10.85 | RD3 |
| RSZone 3Road 03Telecom NetworkA86540 |  | Zone 3 - Road 3 - Telecom Network - Telecom Duct - Concrete Pouring | 1d | 2026-12-06 | 2026-12-07 | RSZone 3Road 03Telecom NetworkA86540-old, RSZone 3Road 03Telecom NetworkA86530, RSZone 3Road 03Telecom NetworkA86490 |  |  |  | 77.46d | 0d | Contract Price Original Scope [155.77 SAR]; Crane Operator [0.27 h]; Pump Operator [0.27 h]; Equipment Operator [0.27 h]; Labour [1.33 h]; Telecom Duct (Road Crossing) [0.51] | 155.77 |  | RD3 |
| RSZone 3Road 03Telecom NetworkA86550 |  | Zone 3 - Road 3 - Telecom Network - Telecom Duct - Test | 2d | 2026-12-07 | 2026-12-09 | RSZone 3Road 03Telecom NetworkA86540 |  |  |  | 77.46d | 0d | Contract Price Original Scope [1001.36 SAR]; Pump Operator [20 h]; Equipment Operator [20 h]; Labour [8.55 h]; Telecom Duct (Road Crossing) [23] | 1,001.36 |  | RD3 |
| RSZone 3Road 03Telecom NetworkA86560 |  | Zone 3 - Road 3 - Telecom Network - Telecom Duct - Backfilling | 2d | 2026-12-09 | 2026-12-12 | RSZone 3Road 03Telecom NetworkA86550, RSZone 3Road 03Telecom NetworkA86530 |  |  |  | 77.46d | 77.06d | Contract Price Original Scope [1502.04 SAR]; Excavator Operator [20 h]; Compactor Operator [20 h]; Dump Truck Operator [20 h]; Water Truck Operator [20 h]; Labour [12.82 h]; Telecom Duct (Road Crossing) [23] | 1,502.04 |  | RD3 |
|  | 2 | **TELECOM MANHOLE** |  | 2026-10-04 | 2026-12-03 |  |  |  |  |  |  |  |  |  |  |
| RSZone 3Road 03Telecom NetworkA88510-old |  | Zone 3 - Road 3 - Telecom Network - TELECOM MANHOLE - Manhole Installation (old) | 25d | 2026-10-04 A | 2026-11-01 A | RSZone 2Road 20Telecom NetworkA86480-old | 100% |  |  |  |  | Contract Price Original Scope [85546 SAR]; Crane Operator [11.4 h]; Boom Truck Operator [11.4 h]; Equipment Operator [11.4 h]; Labour [730.35 h]; Telecom Manhole [5.7] | 85,546 | 85,546 | RD3 |
| RSZone 3Road 03Telecom NetworkA88510 |  | Zone 3 - Road 3 - Telecom Network - TELECOM MANHOLE - Manhole Installation | 1d | 2026-12-03 | 2026-12-03 | RSZone 3Road 03Telecom NetworkA88510-old, RSZone 2Road 20Telecom NetworkA86480 |  |  |  | 76.4d | 0d | Contract Price Original Scope [4502.42 SAR]; Crane Operator [0.6 h]; Boom Truck Operator [0.6 h]; Equipment Operator [0.6 h]; Labour [38.44 h]; Telecom Manhole [0.3] | 4,502.42 |  | RD3 |
|  | 12 | **Road 4** |  | 2026-03-26 | 2027-04-03 |  |  |  |  |  |  |  |  |  |  |
|  | 4 | **Storm Network** |  | 2026-04-13 | 2027-04-03 |  |  |  |  |  |  |  |  |  |  |
|  | 8 | **Perforated 200 mm** |  | 2026-06-14 | 2026-11-10 |  |  |  |  |  |  |  |  |  |  |
| RSZone 3Road 04Storm NetworkA86760 |  | Zone 3 - Road 4 - Storm Network - Perforated 200 mm - Excavation | 4.9d | 2026-06-14 A | 2026-06-18 A | RSZone 2Road 20Storm NetworkA86390 | 100% |  |  |  |  | Contract Price Original Scope [5956.93 SAR]; Excavator Operator [30 h]; Dump Truck Operator [30 h]; Labour [50.86 h]; Perforated 200 mm [235] | 5,956.93 | 5,956.93 | RD4 |
| RSZone 3Road 04Storm NetworkA86770 |  | Zone 3 - Road 4 - Storm Network - Perforated 200 mm - Bedding | 2d | 2026-06-21 A | 2026-06-22 A | RSZone 3Road 04Storm NetworkA86760 | 100% |  |  |  |  | Contract Price Original Scope [2978.46 SAR]; Compactor Operator [20 h]; Equipment Operator [20 h]; Water Truck Operator [20 h]; Labour [25.43 h]; Perforated 200 mm [235] | 2,978.46 | 2,978.46 | RD4 |
| RSZone 3Road 04Storm NetworkA86780 |  | Zone 3 - Road 4 - Storm Network - Perforated 200 mm - Pipe Installation | 3d | 2026-06-22 A | 2026-06-24 A | RSZone 3Road 04Storm NetworkA86770 | 100% |  |  |  |  | Contract Price Original Scope [38720 SAR]; Excavator Operator [40 h]; Crane Operator [40 h]; Equipment Operator [40 h]; Labour [330.57 h]; Perforated 200 mm [235] | 38,720.03 | 38,720.03 | RD4 |
| RSZone 3Road 04Storm NetworkA86800 |  | Zone 3 - Road 4 - Storm Network - Perforated 200 mm - Backfilling | 4d | 2026-06-25 A | 2026-06-29 A | RSZone 3Road 04Storm NetworkA86780 | 100% | 2026-06-25 | 2026-06-30 |  |  | Contract Price Original Scope [5956.93 SAR]; Excavator Operator [20 h]; Compactor Operator [20 h]; Dump Truck Operator [20 h]; Water Truck Operator [20 h]; Labour [50.86 h]; Perforated 200 mm [235] | 5,956.93 | 5,956.93 | RD4 |
| RSZone 3Road 04Storm NetworkA86790 |  | Zone 3 - Road 4 - Storm Network - Perforated 200 mm - Test | 2d | 2026-11-09 | 2026-11-10 | RSZone 3Road 04Storm NetworkA86800 |  |  |  | 123.4d | 109d | Contract Price Original Scope [5956.93 SAR]; Pump Operator [20 h]; Equipment Operator [20 h]; Labour [50.86 h]; Perforated 200 mm [235] | 5,956.93 |  | RD4 |

| ID | WBS | Activity | Duration | Start | Finish | Predecessors | Complete | Total float | Free float | Resources | Cost | Actual cost | MODON |
| --- | --- | --- | --- | --- | --- | --- | --- | --- | --- | --- | --- | --- | --- |
|  | 2 | **Inspection Chamber** |  | 2026-04-14 | 2026-11-12 |  |  |  |  |  |  |  |  |
| RSZone 3Road 04Storm NetworkA82480 |  | Zone 3 - Road 4 - Storm Network - Inspection Chamber - Excavation | 5d | 2026-04-14 A | 2026-04-19 A | RSZone 3Road 04Storm NetworkA86800 | 100% |  |  | Contract Price Original Scope [20729.2 SAR]; Excavator Operator [30 h]; Dump Truck Operator [30 h]; Labour [176.97 h]; Inspection Chamber [5] | 20,729.15 | 20,729.15 | RD4 |
| RSZone 3Road 04Storm NetworkA82490 |  | Zone 3 - Road 4 - Storm Network - Inspection Chamber - IC Installation | 2d | 2026-04-20 A | 2026-04-21 A | RSZone 3Road 04Storm NetworkA82480 | 100% |  |  | Contract Price Original Scope [82916.6 SAR]; Crane Operator [40 h]; Boom Truck Operator [40 h]; Equipment Operator [40 h]; Labour [707.9 h]; Inspection Chamber [5] | 82,916.6 | 82,916.6 | RD4 |
| RSZone 3Road 04Storm NetworkA82500 |  | Zone 3 - Road 4 - Storm Network - Inspection Chamber - D.I | 4d | 2026-04-22 A | 2026-04-26 A | RSZone 3Road 04Storm NetworkA82490 | 100% |  |  | Contract Price Original Scope [13819.4 SAR]; Crane Operator [7 h]; Boom Truck Operator [7 h]; Equipment Operator [7 h]; Labour [117.98 h]; Inspection Chamber [5] | 13,819.43 | 13,819.43 | RD4 |
| RSZone 3Road 04Storm NetworkA82510 |  | Zone 3 - Road 4 - Storm Network - Inspection Chamber - Inner Isolation | 2d | 2026-11-09 | 2026-11-10 | RSZone 3Road 04Storm NetworkA82500 |  | 121.4d | 0d | Contract Price Original Scope [13819.4 SAR]; Equipment Operator [20 h]; Labour [117.98 h]; Inspection Chamber [5] | 13,819.43 |  | RD4 |
| RSZone 3Road 04Storm NetworkA82520 |  | Zone 3 - Road 4 - Storm Network - Inspection Chamber - Backfilling | 2d | 2026-11-11 | 2026-11-12 | RSZone 3Road 04Storm NetworkA82510 |  | 121.4d | 107d | Contract Price Original Scope [6909.72 SAR]; Excavator Operator [20 h]; Compactor Operator [20 h]; Dump Truck Operator [20 h]; Water Truck Operator [20 h]; Labour [58.99 h]; Inspection Chamber [5] | 6,909.72 |  | RD4 |
|  | 1 | **Gravel and Geotextile** |  | 2026-04-13 | 2026-04-14 |  |  |  |  |  |  |  |  |
| RSZone 3Road 04Storm NetworkA82230 |  | Zone 3 - Road 4 - Storm Network - Gravel and Geotextile - Installation | 2d | 2026-04-13 A | 2026-04-14 A | RSZone 3Road 04Storm NetworkA82500 | 100% |  |  | Contract Price Original Scope [27565.1 SAR]; Excavator Operator [7 h]; Dump Truck Operator [7 h]; Equipment Operator [7 h]; Water Truck Operator [7 h]; Labour [235.34 h]; Gravel and Geotextile [235] | 27,565.09 | 27,565.09 | RD4 |
|  | 3 | **Gullies & Catchbasin Pipes** |  | 2026-08-31 | 2026-11-26 |  |  |  |  |  |  |  |  |
| RSZone 3Road 04Storm NetworkA81230-old |  | Zone 3 - Road 4 - Storm Network - Gullies & Catchbasin Pipes - Excavation (old) | 53d | 2026-08-31 A | 2026-11-01 A | RSZone 2Road 11Storm NetworkA73630-old | 100% |  |  | Contract Price Original Scope [3083.66 SAR]; Excavator Operator [9.02 h]; Dump Truck Operator [9.02 h]; Labour [26.33 h]; Gullies & Catchbasin Pipes (300 mm) [76.97] | 3,083.66 | 3,083.66 | RD4 |
| RSZone 3Road 04Storm NetworkA81240-old |  | Zone 3 - Road 4 - Storm Network - Gullies & Catchbasin Pipes - Bedding (old) | 52d | 2026-09-01 A | 2026-11-01 A | RSZone 3Road 04Storm NetworkA81230-old | 100% |  |  | Contract Price Original Scope [9269.13 SAR]; Compactor Operator [6.01 h]; Equipment Operator [6.01 h]; Water Truck Operator [6.01 h]; Labour [79.14 h]; Gullies & Catchbasin Pipes - Bedding [76.94] | 9,269.13 | 9,269.13 | RD4 |
| RSZone 3Road 04Storm NetworkA81250-old |  | Zone 3 - Road 4 - Storm Network - Gullies & Catchbasin Pipes - Pipe Installation (old) | 51d | 2026-09-02 A | 2026-11-01 A | RSZone 3Road 04Storm NetworkA81240-old | 100% |  |  | Contract Price Original Scope [22040.3 SAR]; Excavator Operator [12.28 h]; Crane Operator [12.28 h]; Equipment Operator [12.28 h]; Labour [188.17 h]; Gullies & Catchbasin Pipes (300 mm) [78.59] | 22,040.32 | 22,040.32 | RD4 |
| RSZone 3Road 04Storm NetworkA81230 |  | Zone 3 - Road 4 - Storm Network - Gullies & Catchbasin Pipes - Excavation | 3.5d | 2026-11-11 | 2026-11-15 | RSZone 3Road 04Storm NetworkA81230-old, RSZone 2Road 11Storm NetworkA73630 |  | 109.88d | 0d | Contract Price Original Scope [7172.42 SAR]; Excavator Operator [20.98 h]; Dump Truck Operator [20.98 h]; Labour [61.23 h]; Gullies & Catchbasin Pipes (300 mm) [179.03] | 7,172.42 |  | RD4 |
| RSZone 3Road 04Storm NetworkA81240 |  | Zone 3 - Road 4 - Storm Network - Gullies & Catchbasin Pipes - Bedding | 2.1d | 2026-11-15 | 2026-11-18 | RSZone 3Road 04Storm NetworkA81240-old, RSZone 3Road 04Storm NetworkA81230 |  | 109.88d | 0d | Contract Price Original Scope [21570.9 SAR]; Compactor Operator [13.99 h]; Equipment Operator [13.99 h]; Water Truck Operator [13.99 h]; Labour [184.16 h]; Gullies & Catchbasin Pipes - Bedding [179.06] | 21,570.86 |  | RD4 |
| RSZone 3Road 04Storm NetworkA81250 |  | Zone 3 - Road 4 - Storm Network - Gullies & Catchbasin Pipes - Pipe Installation | 3.46d | 2026-11-18 | 2026-11-22 | RSZone 3Road 04Storm NetworkA81250-old, RSZone 3Road 04Storm NetworkA81240 |  | 109.88d | 0d | Contract Price Original Scope [49752.3 SAR]; Excavator Operator [27.72 h]; Crane Operator [27.72 h]; Equipment Operator [27.72 h]; Labour [424.76 h]; Gullies & Catchbasin Pipes (300 mm) [177.41] | 49,752.26 |  | RD4 |
| RSZone 3Road 04Storm NetworkA81260 |  | Zone 3 - Road 4 - Storm Network - Gullies & Catchbasin Pipes - Test | 2d | 2026-11-22 | 2026-11-24 | RSZone 3Road 04Storm NetworkA81250, RSZone 3Road 04Storm NetworkA81240 |  | 109.88d | 0d | Contract Price Original Scope [10256.1 SAR]; Pump Operator [20 h]; Equipment Operator [20 h]; Labour [87.56 h]; Gullies & Catchbasin Pipes (300 mm) [256] | 10,256.08 |  | RD4 |
| RSZone 3Road 04Storm NetworkA81270 |  | Zone 3 - Road 4 - Storm Network - Gullies & Catchbasin Pipes - Backfilling | 2d | 2026-11-24 | 2026-11-26 | RSZone 3Road 04Storm NetworkA81260, RSZone 3Road 04Storm NetworkA81230 |  | 109.88d | 95.48d | Contract Price Original Scope [10256.1 SAR]; Excavator Operator [20 h]; Compactor Operator [20 h]; Dump Truck Operator [20 h]; Water Truck Operator [20 h]; Labour [87.56 h]; Gullies & Catchbasin Pipes (300 mm) [256] | 10,256.08 |  | RD4 |
|  | 4 | **Concrete Manholes on Box Culvert** |  | 2027-02-27 | 2027-04-03 |  |  |  |  |  |  |  |  |
| RSZone 3Road 04Storm NetworkA95410 |  | Zone 3 - Road 4 - Storm Network - Concrete Manholes on Box Culvert - Excavation | 3d | 2027-02-27 | 2027-03-03 | RSZone 1Road 32Storm NetworkA94920 SS |  | 14.4d | 0d | Contract Price Original Scope [21394.8 SAR]; Labour [182.66 h]; Concrete Manholes on Box Culvert - Manhole with a depth of 0.0-1.5 m [32] | 21,394.83 |  | RD4 |
| RSZone 3Road 04Storm NetworkA95430 |  | Zone 3 - Road 4 - Storm Network - Concrete Manholes on Box Culvert - Slab | 3d | 2027-03-04 | 2027-03-10 | RSZone 3Road 04Storm NetworkA95410 |  | 14.4d | 0d | Contract Price Original Scope [149764 SAR]; Labour [1278.61 h]; Concrete Manholes on Box Culvert - Manhole with a depth of 0.0-1.5 m [32] | 149,763.83 |  | RD4 |
| RSZone 3Road 04Storm NetworkA95420 |  | Zone 3 - Road 4 - Storm Network - Concrete Manholes on Box Culvert - Walls | 3d | 2027-03-10 | 2027-03-16 | RSZone 3Road 04Storm NetworkA95430 |  | 14.4d | 0d | Contract Price Original Scope [85579.3 SAR]; Labour [730.63 h]; Concrete Manholes on Box Culvert - Manhole with a depth of 0.0-1.5 m [32] | 85,579.33 |  | RD4 |
| RSZone 3Road 04Storm NetworkA95450 |  | Zone 3 - Road 4 - Storm Network - Concrete Manholes on Box Culvert - Internal Isolation | 3d | 2027-03-16 | 2027-03-24 | RSZone 3Road 04Storm NetworkA95420 |  | 14.4d | 0d | Contract Price Original Scope [21394.8 SAR]; Labour [182.66 h]; Concrete Manholes on Box Culvert - Manhole with a depth of 0.0-1.5 m [32] | 21,394.83 |  | RD4 |
| RSZone 3Road 04Storm NetworkA95440 |  | Zone 3 - Road 4 - Storm Network - Concrete Manholes on Box Culvert - D.I Cover | 3d | 2027-03-24 | 2027-03-28 | RSZone 3Road 04Storm NetworkA95450 |  | 14.4d | 0d | Contract Price Original Scope [42789.7 SAR]; Labour [365.32 h]; Concrete Manholes on Box Culvert - Manhole with a depth of 0.0-1.5 m [122] | 42,789.66 |  | RD4 |
| RSZone 3Road 04Storm NetworkA95460 |  | Zone 3 - Road 4 - Storm Network - Concrete Manholes on Box Culvert - External Isolation | 3d | 2027-03-28 | 2027-03-31 | RSZone 3Road 04Storm NetworkA95440 |  | 14.4d | 0d | Contract Price Original Scope [21394.8 SAR]; Labour [182.66 h]; Concrete Manholes on Box Culvert - Manhole with a depth of 0.0-1.5 m [32] | 21,394.83 |  | RD4 |
| RSZone 3Road 04Storm NetworkA95470 |  | Zone 3 - Road 4 - Storm Network - Concrete Manholes on Box Culvert - Backfilling | 2d | 2027-03-31 | 2027-04-03 | RSZone 3Road 04Storm NetworkA95460 |  | 14.4d | 0d | Contract Price Original Scope [21394.8 SAR]; Excavator Operator [20 h]; Compactor Operator [20 h]; Dump Truck Operator [20 h]; Water Truck Operator [20 h]; Labour [182.66 h]; Concrete Manholes on Box Culvert - Manhole with a depth of 0.0-1.5 m [32] | 21,394.83 |  | RD4 |

| ID | WBS | Activity | Duration | Start | Finish | Predecessors | Complete | Total float | Free float | Resources | Cost | Actual cost | MODON |
| --- | --- | --- | --- | --- | --- | --- | --- | --- | --- | --- | --- | --- | --- |
|  | 18 | **Potable Water Network** |  | 2026-04-19 | 2027-02-10 |  |  |  |  |  |  |  |  |
|  | 4 | **Potable Pipes** |  | 2026-09-27 | 2026-11-17 |  |  |  |  |  |  |  |  |
| RSZone 3Road 04Potable NetworkA86720-old |  | Zone 3 - Road 4 - Potable Water Network - Potable Pipes - Excavation (old) | 31d | 2026-09-27 A | 2026-11-01 A | RSZone 3Road 03Potable NetworkA83890 | 100% |  |  | Contract Price Original Scope [646.13 SAR]; Excavator Operator [29.75 h]; Dump Truck Operator [29.75 h]; Labour [5.52 h]; Potable Pipes 200 MM [25.78] | 646.13 | 646.13 | RD4 |
| RSZone 3Road 04Potable NetworkA86720 |  | Zone 3 - Road 4 - Potable Water Network - Potable Pipes - Excavation | 1d | 2026-11-09 | 2026-11-09 | RSZone 3Road 04Potable NetworkA86720-old |  | 93.4d | 0d | Contract Price Original Scope [5.43 SAR]; Excavator Operator [0.25 h]; Dump Truck Operator [0.25 h]; Labour [0.05 h]; Potable Pipes 200 MM [0.22] | 5.43 |  | RD4 |
| RSZone 3Road 04Potable NetworkA86730 |  | Zone 3 - Road 4 - Potable Water Network - Potable Pipes - Installation | 3d | 2026-11-10 | 2026-11-12 | RSZone 3Road 04Potable NetworkA86720 |  | 93.4d | 0d | Contract Price Original Scope [4560.89 SAR]; Labour [38.94 h]; Potable Pipes 200 MM [26] | 4,560.89 |  | RD4 |
| RSZone 3Road 04Potable NetworkA86740 |  | Zone 3 - Road 4 - Potable Water Network - Potable Pipes - Test | 2d | 2026-11-14 | 2026-11-15 | RSZone 3Road 04Potable NetworkA86730 |  | 93.4d | 0d | Contract Price Original Scope [651.56 SAR]; Pump Operator [20 h]; Equipment Operator [20 h]; Labour [5.56 h]; Potable Pipes 200 MM [26] | 651.56 |  | RD4 |
| RSZone 3Road 04Potable NetworkA86750 |  | Zone 3 - Road 4 - Potable Water Network - Potable Pipes - Backfilling | 2d | 2026-11-16 | 2026-11-17 | RSZone 3Road 04Potable NetworkA86740 |  | 93.4d | 93.2d | Contract Price Original Scope [651.56 SAR]; Excavator Operator [20 h]; Compactor Operator [20 h]; Dump Truck Operator [20 h]; Water Truck Operator [20 h]; Labour [5.56 h]; Potable Pipes 200 MM [26] | 651.56 |  | RD4 |
|  | 3 | **Fittings** |  | 2026-04-19 | 2027-01-20 |  |  |  |  |  |  |  |  |
|  | 6 | **Tees** |  | 2027-01-13 | 2027-01-17 |  |  |  |  |  |  |  |  |
| RSZone 3Road 04Potable NetworkA82580 |  | Zone 3 - Road 4 - Potable Water Network - Tees - Installation | 3d | 2027-01-13 | 2027-01-17 | RSZone 2Road 19Potable NetworkA75690 |  | 0.2d | 0d | Contract Price Original Scope [23996.8 SAR]; Labour [204.87 h]; Fittings - Tees (all sizes) [8] | 23,996.82 |  | RD4 |
|  | 5 | **Elbows** |  | 2026-09-06 | 2026-11-10 |  |  |  |  |  |  |  |  |
| RSZone 3Road 04Potable NetworkA82570-old |  | Zone 3 - Road 4 - Potable Water Network - Elbows - Installation (old) | 48d | 2026-09-06 A | 2026-11-01 A | RSZone 3Road 04Potable NetworkA82630 | 100% |  |  | Contract Price Original Scope [5628.73 SAR]; Labour [48.06 h]; Fittings - Elbows (all sizes) [3] | 5,628.73 | 5,628.73 | RD4 |
| RSZone 3Road 04Potable NetworkA82570 |  | Zone 3 - Road 4 - Potable Water Network - Elbows - Installation | 1.88d | 2026-11-09 | 2026-11-10 | RSZone 3Road 04Potable NetworkA82570-old |  | 99.53d | 99.33d | Contract Price Original Scope [9381.22 SAR]; Labour [80.09 h]; Fittings - Elbows (all sizes) [5] | 9,381.22 |  | RD4 |
|  | 8 | **End Cap** |  | 2026-04-19 | 2026-04-21 |  |  |  |  |  |  |  |  |
| RSZone 3Road 04Potable NetworkA82630 |  | Zone 3 - Road 4 - Potable Water Network - End Cap - Installation | 3d | 2026-04-19 A | 2026-04-21 A | RSZone 3Road 03Potable NetworkA83910 | 100% |  |  | Contract Price Original Scope [2192.93 SAR]; Labour [18.72 h]; Fittings - End Caps (all sizes) [3] | 2,192.93 | 2,192.93 | RD4 |
|  | 1 | **Reducer 710 MM** |  | 2027-01-17 | 2027-01-20 |  |  |  |  |  |  |  |  |
| RSZone 3Road 04Potable NetworkA93580 |  | Zone 3 - Road 4 - Potable Water Network - Reducer 710 MM - Installation | 3d | 2027-01-17 | 2027-01-20 | RSZone 3Road 04Potable NetworkA82580 |  | 0.2d | 0d | Labour; Fittings - Reducers (all sizes) [3] |  |  | RD4 |
|  | 1 | **Valves** |  | 2026-04-22 | 2027-01-26 |  |  |  |  |  |  |  |  |
|  | 10 | **Buried Valves** |  | 2026-04-22 | 2026-11-17 |  |  |  |  |  |  |  |  |
| RSZone 3Road 04Potable NetworkA82690 |  | Zone 3 - Road 4 - Potable Water Network - Buried Valves - Excavation | 5d | 2026-04-22 A | 2026-04-27 A | RSZone 3Road 04Potable NetworkA82630 | 100% |  |  | Contract Price Original Scope [2723.23 SAR]; Excavator Operator [30 h]; Dump Truck Operator [30 h]; Labour [23.25 h]; Buried Valves [17] | 2,723.23 | 2,723.23 | RD4 |
| RSZone 3Road 04Potable NetworkA82700 |  | Zone 3 - Road 4 - Potable Water Network - Buried Valves - Installation | 2.9d | 2026-04-28 A | 2026-04-30 A | RSZone 3Road 04Potable NetworkA82690, RSZone 3Road 04Potable NetworkA82690 FF | 100% |  |  | Contract Price Original Scope [35401.9 SAR]; Labour [302.24 h]; Buried Valves [17] | 35,401.94 | 35,401.94 | RD4 |
| RSZone 3Road 04Potable NetworkA82710 |  | Zone 3 - Road 4 - Potable Water Network - Buried Valves - Surface Box | 3.1d | 2026-11-09 | 2026-11-12 | RSZone 3Road 04Potable NetworkA82700 |  | 94.3d | 0d | Labour; Buried Valves [17] |  |  | RD4 |
| RSZone 3Road 04Potable NetworkA82720 |  | Zone 3 - Road 4 - Potable Water Network - Buried Valves - Test | 2d | 2026-11-12 | 2026-11-15 | RSZone 3Road 04Potable NetworkA82710 |  | 94.3d | 0d | Contract Price Original Scope [10892.9 SAR]; Pump Operator [20 h]; Equipment Operator [20 h]; Labour [93 h]; Buried Valves [17] | 10,892.9 |  | RD4 |
| RSZone 3Road 04Potable NetworkA82730 |  | Zone 3 - Road 4 - Potable Water Network - Buried Valves - Backfilling | 2d | 2026-11-15 | 2026-11-17 | RSZone 3Road 04Potable NetworkA82720 |  | 94.3d | 94.1d | Contract Price Original Scope [5446.45 SAR]; Excavator Operator [20 h]; Compactor Operator [20 h]; Dump Truck Operator [20 h]; Water Truck Operator [20 h]; Labour [46.5 h]; Buried Valves [17] | 5,446.45 |  | RD4 |

| ID | WBS | Activity | Duration | Start | Finish | Predecessors | Total float | Free float | Resources | MODON |
| --- | --- | --- | --- | --- | --- | --- | --- | --- | --- | --- |
|  | 11 | **Washout Valves 355 MM** |  | 2027-01-17 | 2027-01-26 |  |  |  |  |  |
| RSZone 3Road 04Potable NetworkA83200 |  | Zone 3 - Road 4 - Potable Water Network - Washout Valves 355 MM - Installation | 3d | 2027-01-17 | 2027-01-20 | RSZone 3Road 04Potable NetworkA93580 SS | 0.2d | 0d | Labour; Washout / Air / other Valves [3] | RD4 |
| RSZone 3Road 04Potable NetworkA83210 |  | Zone 3 - Road 4 - Potable Water Network - Washout Valves 355 MM - Surface Box | 3d | 2027-01-20 | 2027-01-24 | RSZone 3Road 04Potable NetworkA83200 | 34.2d | 0d | Labour; Washout / Air / other Valves [3] | RD4 |
| RSZone 3Road 04Potable NetworkA83220 |  | Zone 3 - Road 4 - Potable Water Network - Washout Valves 355 MM - Test | 2d | 2027-01-24 | 2027-01-26 | RSZone 3Road 04Potable NetworkA83210 | 34.2d | 34d | Pump Operator [20 h]; Equipment Operator [20 h]; Labour; Washout / Air / other Valves [3] | RD4 |
|  | 1 | **Washout Valves 560 MM** |  | 2027-01-17 | 2027-01-26 |  |  |  |  |  |
| RSZone 3Road 04Potable NetworkA93590 |  | Zone 3 - Road 4 - Potable Water Network - Washout Valves 560 MM - Installation | 3d | 2027-01-17 | 2027-01-20 | RSZone 3Road 04Potable NetworkA83200 SS | 0.2d | 0d | Labour; Washout / Air / other Valves [2] | RD4 |
| RSZone 3Road 04Potable NetworkA93600 |  | Zone 3 - Road 4 - Potable Water Network - Washout Valves 560 MM - Surface Box | 3d | 2027-01-20 | 2027-01-24 | RSZone 3Road 04Potable NetworkA93590 | 34.2d | 0d | Labour; Washout / Air / other Valves [2] | RD4 |
| RSZone 3Road 04Potable NetworkA93610 |  | Zone 3 - Road 4 - Potable Water Network - Washout Valves 560 MM - Test | 2d | 2027-01-24 | 2027-01-26 | RSZone 3Road 04Potable NetworkA93600 | 34.2d | 34d | Pump Operator [20 h]; Equipment Operator [20 h]; Labour; Washout / Air / other Valves [2] | RD4 |
|  | 2 | **Washout Valves 710 MM** |  | 2027-01-17 | 2027-01-26 |  |  |  |  |  |
| RSZone 3Road 04Potable NetworkA93620 |  | Zone 3 - Road 4 - Potable Water Network - Washout Valves 710 MM - Installation | 3d | 2027-01-17 | 2027-01-20 | RSZone 3Road 04Potable NetworkA93590 SS | 0.2d | 0d | Labour; Washout / Air / other Valves [3] | RD4 |
| RSZone 3Road 04Potable NetworkA93630 |  | Zone 3 - Road 4 - Potable Water Network - Washout Valves 710 MM - Surface Box | 3d | 2027-01-20 | 2027-01-24 | RSZone 3Road 04Potable NetworkA93620 | 34.2d | 0d | Labour; Washout / Air / other Valves [3] | RD4 |
| RSZone 3Road 04Potable NetworkA93640 |  | Zone 3 - Road 4 - Potable Water Network - Washout Valves 710 MM - Test | 2d | 2027-01-24 | 2027-01-26 | RSZone 3Road 04Potable NetworkA93630 | 34.2d | 34d | Pump Operator [20 h]; Equipment Operator [20 h]; Labour; Washout / Air / other Valves [3] | RD4 |
|  | 12 | **Air Valves 355 MM** |  | 2027-01-17 | 2027-01-26 |  |  |  |  |  |
| RSZone 3Road 04Potable NetworkA83300 |  | Zone 3 - Road 4 - Potable Water Network - Air Valves 355 MM - Installation | 3d | 2027-01-17 | 2027-01-20 | RSZone 3Road 04Potable NetworkA93620 SS | 0.2d | 0d | Labour; Washout / Air / other Valves [1] | RD4 |
| RSZone 3Road 04Potable NetworkA83310 |  | Zone 3 - Road 4 - Potable Water Network - Air Valves 355 MM - Surface Box | 3d | 2027-01-20 | 2027-01-24 | RSZone 3Road 04Potable NetworkA83300 | 34.2d | 0d | Labour; Washout / Air / other Valves [1] | RD4 |
| RSZone 3Road 04Potable NetworkA83320 |  | Zone 3 - Road 4 - Potable Water Network - Air Valves 355 MM - Test | 2d | 2027-01-24 | 2027-01-26 | RSZone 3Road 04Potable NetworkA83310 | 34.2d | 34d | Pump Operator [20 h]; Equipment Operator [20 h]; Labour; Washout / Air / other Valves [1] | RD4 |
|  | 3 | **Air Valves 560 MM** |  | 2027-01-17 | 2027-01-26 |  |  |  |  |  |
| RSZone 3Road 04Potable NetworkA93650 |  | Zone 3 - Road 4 - Potable Water Network - Air Valves 560 MM - Installation | 3d | 2027-01-17 | 2027-01-20 | RSZone 3Road 04Potable NetworkA83300 SS | 0.2d | 0d | Labour; Washout / Air / other Valves [2] | RD4 |
| RSZone 3Road 04Potable NetworkA93660 |  | Zone 3 - Road 4 - Potable Water Network - Air Valves 560 MM - Surface Box | 3d | 2027-01-20 | 2027-01-24 | RSZone 3Road 04Potable NetworkA93650 | 34.2d | 0d | Labour; Washout / Air / other Valves [2] | RD4 |
| RSZone 3Road 04Potable NetworkA93670 |  | Zone 3 - Road 4 - Potable Water Network - Air Valves 560 MM - Test | 2d | 2027-01-24 | 2027-01-26 | RSZone 3Road 04Potable NetworkA93660 | 34.2d | 34d | Pump Operator [20 h]; Equipment Operator [20 h]; Labour; Washout / Air / other Valves [2] | RD4 |
|  | 4 | **Air Valves 710 MM** |  | 2027-01-17 | 2027-01-26 |  |  |  |  |  |
| RSZone 3Road 04Potable NetworkA93680 |  | Zone 3 - Road 4 - Potable Water Network - Air Valves 710 MM - Installation | 3d | 2027-01-17 | 2027-01-20 | RSZone 3Road 04Potable NetworkA93650 SS | 0.2d | 0d | Labour; Washout / Air / other Valves [2] | RD4 |
| RSZone 3Road 04Potable NetworkA93690 |  | Zone 3 - Road 4 - Potable Water Network - Air Valves 710 MM - Surface Box | 3d | 2027-01-20 | 2027-01-24 | RSZone 3Road 04Potable NetworkA93680 | 34.2d | 0d | Labour; Washout / Air / other Valves [2] | RD4 |
| RSZone 3Road 04Potable NetworkA93700 |  | Zone 3 - Road 4 - Potable Water Network - Air Valves 710 MM - Test | 2d | 2027-01-24 | 2027-01-26 | RSZone 3Road 04Potable NetworkA93690 | 34.2d | 34d | Pump Operator [20 h]; Equipment Operator [20 h]; Labour; Washout / Air / other Valves [2] | RD4 |

| ID | WBS | Activity | Duration | Start | Finish | Predecessors | Complete | Planned start | Planned finish | Total float | Free float | Resources | Cost | Actual cost | MODON |
| --- | --- | --- | --- | --- | --- | --- | --- | --- | --- | --- | --- | --- | --- | --- | --- |
|  | 2 | **Valve Chambers** |  | 2026-11-02 | 2027-02-10 |  |  |  |  |  |  |  |  |  |  |
|  | 14 | **Isolation Valve Chambers** |  | 2027-01-17 | 2027-02-10 |  |  |  |  |  |  |  |  |  |  |
| RSZone 3Road 04Potable NetworkA83490 |  | Zone 3 - Road 4 - Potable Water Network - Isolation Valve Chambers - Excavation | 2d | 2027-01-17 | 2027-01-19 | RSZone 3Road 04Potable NetworkA93680 SS |  |  |  | 0.2d | 0d | Labour; Isolation Valve Chambers |  |  | RD4 |
| RSZone 3Road 04Potable NetworkA83500 |  | Zone 3 - Road 4 - Potable Water Network - Isolation Valve Chambers - Footings | 2.9d | 2027-01-19 | 2027-01-23 | RSZone 3Road 04Potable NetworkA83490 |  |  |  | 20.5d | 0d | Labour; Isolation Valve Chambers |  |  | RD4 |
| RSZone 3Road 04Potable NetworkA83520 |  | Zone 3 - Road 4 - Potable Water Network - Isolation Valve Chambers - Slab | 3d | 2027-01-23 | 2027-01-26 | RSZone 3Road 04Potable NetworkA83500 |  |  |  | 20.5d | 0d | Contract Price Original Scope [49971.6 SAR]; Labour [426.63 h]; Isolation Valve Chambers [5] | 49,971.59 |  | RD4 |
| RSZone 3Road 04Potable NetworkA83510 |  | Zone 3 - Road 4 - Potable Water Network - Isolation Valve Chambers - Walls | 2.8d | 2027-01-26 | 2027-01-28 | RSZone 3Road 04Potable NetworkA83520 |  |  |  | 20.5d | 0d | Labour; Isolation Valve Chambers |  |  | RD4 |
| RSZone 3Road 04Potable NetworkA83540 |  | Zone 3 - Road 4 - Potable Water Network - Isolation Valve Chambers - Internal Isolation | 3d | 2027-01-28 | 2027-02-01 | RSZone 3Road 04Potable NetworkA83510 |  |  |  | 20.5d | 0d | Contract Price Original Scope [7138.8 SAR]; Labour [60.95 h]; Isolation Valve Chambers [5] | 7,138.8 |  | RD4 |
| RSZone 3Road 04Potable NetworkA83530 |  | Zone 3 - Road 4 - Potable Water Network - Isolation Valve Chambers - D.I Cover | 3d | 2027-02-01 | 2027-02-04 | RSZone 3Road 04Potable NetworkA83540 |  |  |  | 20.5d | 0d | Contract Price Original Scope [14277.6 SAR]; Labour [121.89 h]; Isolation Valve Chambers [5] | 14,277.6 |  | RD4 |
| RSZone 3Road 04Potable NetworkA83550 |  | Zone 3 - Road 4 - Potable Water Network - Isolation Valve Chambers - External Isolation | 3d | 2027-02-04 | 2027-02-08 | RSZone 3Road 04Potable NetworkA83530 |  |  |  | 20.5d | 0d | Contract Price Original Scope [7138.8 SAR]; Labour [60.95 h]; Isolation Valve Chambers [5] | 7,138.8 |  | RD4 |
| RSZone 3Road 04Potable NetworkA83560 |  | Zone 3 - Road 4 - Potable Water Network - Isolation Valve Chambers - Backfilling | 2d | 2027-02-08 | 2027-02-10 | RSZone 3Road 04Potable NetworkA83550 |  |  |  | 20.5d | 20.3d | Contract Price Original Scope [7138.8 SAR]; Excavator Operator [20 h]; Compactor Operator [20 h]; Dump Truck Operator [20 h]; Water Truck Operator [20 h]; Labour [60.95 h]; Isolation Valve Chambers [5] | 7,138.8 |  | RD4 |
|  | 16 | **Air Valve Chambers** |  | 2027-01-17 | 2027-02-10 |  |  |  |  |  |  |  |  |  |  |
| RSZone 3Road 04Potable NetworkA83730 |  | Zone 3 - Road 4 - Potable Water Network - Air Valve Chambers - Excavation | 2d | 2027-01-17 | 2027-01-19 | RSZone 3Road 04Potable NetworkA83490 SS |  |  |  | 0.2d | 0d | Labour; Air Valve Chambers |  |  | RD4 |
| RSZone 3Road 04Potable NetworkA83740 |  | Zone 3 - Road 4 - Potable Water Network - Air Valve Chambers - Footings | 2.9d | 2027-01-19 | 2027-01-23 | RSZone 3Road 04Potable NetworkA83730 |  |  |  | 20.5d | 0d | Labour; Air Valve Chambers |  |  | RD4 |
| RSZone 3Road 04Potable NetworkA83760 |  | Zone 3 - Road 4 - Potable Water Network - Air Valve Chambers - Slab | 3d | 2027-01-23 | 2027-01-26 | RSZone 3Road 04Potable NetworkA83740 |  |  |  | 20.5d | 0d | Contract Price Original Scope [34610.8 SAR]; Labour [295.49 h]; Air Valve Chambers [4] | 34,610.83 |  | RD4 |
| RSZone 3Road 04Potable NetworkA83750 |  | Zone 3 - Road 4 - Potable Water Network - Air Valve Chambers - Walls | 2.8d | 2027-01-26 | 2027-01-28 | RSZone 3Road 04Potable NetworkA83760 |  |  |  | 20.5d | 0d | Labour; Air Valve Chambers |  |  | RD4 |
| RSZone 3Road 04Potable NetworkA83780 |  | Zone 3 - Road 4 - Potable Water Network - Air Valve Chambers - Internal Isolation | 3d | 2027-01-28 | 2027-02-01 | RSZone 3Road 04Potable NetworkA83750 |  |  |  | 20.5d | 0d | Contract Price Original Scope [8652.71 SAR]; Labour [73.87 h]; Air Valve Chambers [7] | 8,652.71 |  | RD4 |
| RSZone 3Road 04Potable NetworkA83770 |  | Zone 3 - Road 4 - Potable Water Network - Air Valve Chambers - D.I Cover | 3d | 2027-02-01 | 2027-02-04 | RSZone 3Road 04Potable NetworkA83780 |  |  |  | 20.5d | 0d | Contract Price Original Scope [17305.4 SAR]; Labour [147.74 h]; Air Valve Chambers [7] | 17,305.41 |  | RD4 |
| RSZone 3Road 04Potable NetworkA83790 |  | Zone 3 - Road 4 - Potable Water Network - Air Valve Chambers - External Isolation | 2.9d | 2027-02-04 | 2027-02-08 | RSZone 3Road 04Potable NetworkA83770 |  |  |  | 20.5d | 0d | Labour; Air Valve Chambers |  |  | RD4 |
| RSZone 3Road 04Potable NetworkA83800 |  | Zone 3 - Road 4 - Potable Water Network - Air Valve Chambers - Backfilling | 2.1d | 2027-02-08 | 2027-02-10 | RSZone 3Road 04Potable NetworkA83790 |  |  |  | 20.5d | 20.3d | Excavator Operator [20 h]; Compactor Operator [20 h]; Dump Truck Operator [20 h]; Water Truck Operator [20 h]; Labour; Air Valve Chambers |  |  | RD4 |
|  | 15 | **Washout Valve Chambers** |  | 2026-11-02 | 2027-02-08 |  |  |  |  |  |  |  |  |  |  |
| RSZone 3Road 04Potable NetworkA83570 |  | Zone 3 - Road 4 - Potable Water Network - Washout Valve Chambers - Excavation | 2d | 2026-11-02 A | 2026-11-05 A | RSZone 1Road 02Potable NetworkA55750 | 100% | 2027-01-10 | 2027-01-12 |  |  | Contract Price Original Scope [1345.83 SAR]; Labour [11.49 h]; Washout Valve Chambers [1] | 1,345.83 | 1,345.83 | RD4 |
| RSZone 3Road 04Potable NetworkA83580 |  | Zone 3 - Road 4 - Potable Water Network - Washout Valve Chambers - Footings | 3d | 2026-11-02 A | 2026-11-05 A | RSZone 3Road 04Potable NetworkA83570 | 100% | 2027-01-12 | 2027-01-16 |  |  | Contract Price Original Scope [4037.49 SAR]; Labour [34.47 h]; Washout Valve Chambers [1] | 4,037.49 | 4,037.49 | RD4 |
| RSZone 3Road 04Potable NetworkA83600 |  | Zone 3 - Road 4 - Potable Water Network - Washout Valve Chambers - Slab | 3d | 2027-01-19 | 2027-01-23 | RSZone 3Road 04Potable NetworkA83580, RSZone 3Road 04Potable NetworkA83730 |  |  |  | 0.2d | 0d | Contract Price Original Scope [9420.8 SAR]; Labour [80.43 h]; Washout Valve Chambers [1] | 9,420.8 |  | RD4 |
| RSZone 3Road 04Potable NetworkA83590 |  | Zone 3 - Road 4 - Potable Water Network - Washout Valve Chambers - Walls | 3d | 2027-01-23 | 2027-01-26 | RSZone 3Road 04Potable NetworkA83600 |  |  |  | 0.2d | 0d | Contract Price Original Scope [5383.32 SAR]; Labour [45.96 h]; Washout Valve Chambers [1] | 5,383.32 |  | RD4 |
| RSZone 3Road 04Potable NetworkA83620 |  | Zone 3 - Road 4 - Potable Water Network - Washout Valve Chambers - Internal Isolation | 3d | 2027-01-26 | 2027-01-30 | RSZone 3Road 04Potable NetworkA83590 |  |  |  | 0.2d | 0d | Contract Price Original Scope [1345.83 SAR]; Labour [11.49 h]; Washout Valve Chambers [1] | 1,345.83 |  | RD4 |
| RSZone 3Road 04Potable NetworkA83610 |  | Zone 3 - Road 4 - Potable Water Network - Washout Valve Chambers - D.I Cover | 3d | 2027-01-30 | 2027-02-02 | RSZone 3Road 04Potable NetworkA83620 |  |  |  | 0.2d | 0d | Contract Price Original Scope [13458.3 SAR]; Labour [114.9 h]; Washout Valve Chambers [5] | 13,458.29 |  | RD4 |
| RSZone 3Road 04Potable NetworkA83630 |  | Zone 3 - Road 4 - Potable Water Network - Washout Valve Chambers - External Isolation | 3d | 2027-02-02 | 2027-02-06 | RSZone 3Road 04Potable NetworkA83610 |  |  |  | 0.2d | 0d | Contract Price Original Scope [1345.83 SAR]; Labour [11.49 h]; Washout Valve Chambers [1] | 1,345.83 |  | RD4 |
| RSZone 3Road 04Potable NetworkA83640 |  | Zone 3 - Road 4 - Potable Water Network - Washout Valve Chambers - Backfilling | 2d | 2027-02-06 | 2027-02-08 | RSZone 3Road 04Potable NetworkA83630 |  |  |  | 0.2d | 0d | Contract Price Original Scope [1345.83 SAR]; Excavator Operator [20 h]; Compactor Operator [20 h]; Dump Truck Operator [20 h]; Water Truck Operator [20 h]; Labour [11.49 h]; Washout Valve Chambers [1] | 1,345.83 |  | RD4 |

| ID | WBS | Activity | Duration | Start | Finish | Predecessors | Complete | Planned start | Planned finish | Total float | Free float | Resources | Cost | Actual cost | MODON |
| --- | --- | --- | --- | --- | --- | --- | --- | --- | --- | --- | --- | --- | --- | --- | --- |
|  | 17 | **FIRE HYDRANT** |  | 2026-09-01 | 2026-11-19 |  |  |  |  |  |  |  |  |  |  |
| RSZone 3Road 04Potable NetworkA83950-old |  | Zone 3 - Road 4 - Potable Water Network - FIRE HYDRANT - Excavation (old) | 52d | 2026-09-01 A | 2026-11-01 A | RSZone 3Road 04Potable NetworkA82630, RSZone 3Road 04Potable NetworkA82630 FF | 100% |  |  |  |  | Contract Price Original Scope [18030 SAR]; Excavator Operator [27.85 h]; Dump Truck Operator [27.85 h]; Labour [153.93 h]; Fire Hydrant [13] | 18,030.04 | 18,030.04 | RD4 |
| RSZone 3Road 04Potable NetworkA83960-old |  | Zone 3 - Road 4 - Potable Water Network - FIRE HYDRANT - Buried Gate Valve Installation (old) | 50d | 2026-09-03 A | 2026-11-01 A | RSZone 3Road 04Potable NetworkA83950-old | 100% | 2026-09-03 | 2026-11-02 |  |  | Labour; Fire Hydrant [13] |  |  | RD4 |
| RSZone 3Road 04Potable NetworkA83970-old |  | Zone 3 - Road 4 - Potable Water Network - FIRE HYDRANT - Fire Hydrant Installation (old) | 48d | 2026-09-06 A | 2026-11-01 A | RSZone 3Road 04Potable NetworkA83960-old | 100% |  |  |  |  | Contract Price Original Scope [131619 SAR]; Labour [1123.7 h]; Fire Hydrant [13] | 131,619.3 | 131,619.3 | RD4 |
| RSZone 3Road 04Potable NetworkA83950 |  | Zone 3 - Road 4 - Potable Water Network - FIRE HYDRANT - Excavation | 1d | 2026-11-09 | 2026-11-09 | RSZone 3Road 04Potable NetworkA83950-old |  |  |  | 91.4d | 0d | Contract Price Original Scope [1391.91 SAR]; Excavator Operator [2.15 h]; Dump Truck Operator [2.15 h]; Labour [11.88 h]; Fire Hydrant [1] | 1,391.91 |  | RD4 |
| RSZone 3Road 04Potable NetworkA83960 |  | Zone 3 - Road 4 - Potable Water Network - FIRE HYDRANT - Buried Gate Valve Installation | 1d | 2026-11-10 | 2026-11-10 | RSZone 3Road 04Potable NetworkA83960-old, RSZone 3Road 04Potable NetworkA83950 |  |  |  | 91.4d | 0d | Labour; Fire Hydrant [1] |  |  | RD4 |
| RSZone 3Road 04Potable NetworkA83970 |  | Zone 3 - Road 4 - Potable Water Network - FIRE HYDRANT - Fire Hydrant Installation | 1d | 2026-11-11 | 2026-11-11 | RSZone 3Road 04Potable NetworkA83970-old, RSZone 3Road 04Potable NetworkA83960 |  |  |  | 91.4d | 0d | Contract Price Original Scope [10160.9 SAR]; Labour [86.75 h]; Fire Hydrant [1] | 10,160.92 |  | RD4 |
| RSZone 3Road 04Potable NetworkA83980 |  | Zone 3 - Road 4 - Potable Water Network - FIRE HYDRANT - Surface Box | 3d | 2026-11-12 | 2026-11-15 | RSZone 3Road 04Potable NetworkA83970, RSZone 3Road 04Potable NetworkA83950, RSZone 3Road 04Potable NetworkA83960 |  |  |  | 91.4d | 0d | Labour; Fire Hydrant [14] |  |  | RD4 |
| RSZone 3Road 04Potable NetworkA83990 |  | Zone 3 - Road 4 - Potable Water Network - FIRE HYDRANT - Test | 2d | 2026-11-16 | 2026-11-17 | RSZone 3Road 04Potable NetworkA83980 |  |  |  | 91.4d | 0d | Contract Price Original Scope [13595.4 SAR]; Pump Operator [20 h]; Equipment Operator [20 h]; Labour [116.07 h]; Fire Hydrant [14] | 13,595.36 |  | RD4 |
| RSZone 3Road 04Potable NetworkA84000 |  | Zone 3 - Road 4 - Potable Water Network - FIRE HYDRANT - Backfilling | 2d | 2026-11-18 | 2026-11-19 | RSZone 3Road 04Potable NetworkA83990 |  |  |  | 91.4d | 91.2d | Contract Price Original Scope [19422 SAR]; Excavator Operator [20 h]; Compactor Operator [20 h]; Dump Truck Operator [20 h]; Water Truck Operator [20 h]; Labour [165.81 h]; Fire Hydrant [14] | 19,421.95 |  | RD4 |
|  | 9 | **Thrust Block** |  | 2026-10-19 | 2026-11-12 |  |  |  |  |  |  |  |  |  |  |
| RSZone 3Road 04Potable NetworkA93710-old |  | Zone 3 - Road 4 - Potable Water Network - Thrust Block - Thrust Block (old) | 12d | 2026-10-19 A | 2026-11-01 A | RSZone 3Road 04Potable NetworkA83970-old | 100% |  |  |  |  | Contract Price Original Scope [13493.4 SAR]; Crane Operator [4 h]; Pump Operator [4 h]; Equipment Operator [4 h]; Labour [115.2 h]; Thrust Blocks [4] | 13,493.36 | 13,493.36 | RD4 |
| RSZone 3Road 04Potable NetworkA93710 |  | Zone 3 - Road 4 - Potable Water Network - Thrust Block - Thrust Block | 1d | 2026-11-12 | 2026-11-12 | RSZone 3Road 04Potable NetworkA93710-old, RSZone 3Road 04Potable NetworkA83970 |  |  |  | 97.4d | 97.2d | Contract Price Original Scope [30360.1 SAR]; Crane Operator [9 h]; Pump Operator [9 h]; Equipment Operator [9 h]; Labour [259.2 h]; Thrust Blocks [9] | 30,360.07 |  | RD4 |
|  | 10 | **Bedding** |  | 2027-02-06 | 2027-02-08 |  |  |  |  |  |  |  |  |  |  |
| RSZone 3Road 04Potable NetworkA93720 |  | Zone 3 - Road 4 - Potable Water Network - Bedding - Bedding | 2d | 2027-02-06 | 2027-02-08 | RSZone 3Road 04Potable NetworkA83640 SS |  |  |  | 0.2d | 0d | Contract Price Original Scope [483.2 SAR]; Compactor Operator [20 h]; Equipment Operator [20 h]; Water Truck Operator [20 h]; Labour [4.13 h]; Sand Bedding [26] | 483.2 |  | RD4 |
|  | 1 | **Lateral Irrigation Network** |  | 2026-03-26 | 2027-02-24 |  |  |  |  |  |  |  |  |  |  |
|  | 11 | **HDPE Pipes 125 MM** |  | 2026-08-19 | 2026-11-12 |  |  |  |  |  |  |  |  |  |  |
| RSZone 3Road 04Irrigation NetworkA93730 |  | Zone 3 - Road 4 - Lateral Irrigation Network - HDPE Pipes 125 MM - Excavation | 5d | 2026-08-19 A | 2026-08-24 A | RSZone 3Road 03Irrigation NetworkA79290 | 100% |  |  |  |  | Contract Price Original Scope [735.71 SAR]; Excavator Operator [30 h]; Dump Truck Operator [30 h]; Labour [6.28 h]; HDPE Pipes 125 MM [53] | 735.71 | 735.71 | RD4 |
| RSZone 3Road 04Irrigation NetworkA93740 |  | Zone 3 - Road 4 - Lateral Irrigation Network - HDPE Pipes 125 MM - Installation | 2.9d | 2026-08-25 A | 2026-08-27 A | RSZone 3Road 04Irrigation NetworkA93730 | 100% |  |  |  |  | Contract Price Original Scope [5149.99 SAR]; Labour [43.97 h]; HDPE Pipes 125 MM [53] | 5,149.99 | 5,149.99 | RD4 |
| RSZone 3Road 04Irrigation NetworkA93750 |  | Zone 3 - Road 4 - Lateral Irrigation Network - HDPE Pipes 125 MM - Test | 2d | 2026-11-09 | 2026-11-10 | RSZone 3Road 04Irrigation NetworkA93740 |  |  |  | 97.4d | 0d | Contract Price Original Scope [735.71 SAR]; Pump Operator [20 h]; Equipment Operator [20 h]; Labour [6.28 h]; HDPE Pipes 125 MM [53] | 735.71 |  | RD4 |
| RSZone 3Road 04Irrigation NetworkA93760 |  | Zone 3 - Road 4 - Lateral Irrigation Network - HDPE Pipes 125 MM - Backfilling | 2d | 2026-11-11 | 2026-11-12 | RSZone 3Road 04Irrigation NetworkA93750 |  |  |  | 97.4d | 96.76d | Contract Price Original Scope [735.71 SAR]; Excavator Operator [20 h]; Compactor Operator [20 h]; Dump Truck Operator [20 h]; Water Truck Operator [20 h]; Labour [6.28 h]; HDPE Pipes 125 MM [53] | 735.71 |  | RD4 |
|  | 12 | **HDPE Pipes 280 MM** |  | 2026-12-23 | 2027-01-04 |  |  |  |  |  |  |  |  |  |  |
| RSZone 3Road 04Irrigation NetworkA93770 |  | Zone 3 - Road 4 - Lateral Irrigation Network - HDPE Pipes 280 MM - Excavation | 3d | 2026-12-23 | 2026-12-27 | RSZone 3Road 03Irrigation NetworkA79150 SS |  |  |  | 0.64d | 0d | Contract Price Original Scope [538.14 SAR]; Excavator Operator [30 h]; Dump Truck Operator [30 h]; Labour [4.59 h]; HDPE Pipes 280 MM [16] | 538.14 |  | RD4 |
| RSZone 3Road 04Irrigation NetworkA93780 |  | Zone 3 - Road 4 - Lateral Irrigation Network - HDPE Pipes 280 MM - Installation | 3d | 2026-12-27 | 2026-12-30 | RSZone 3Road 04Irrigation NetworkA93770 |  |  |  | 0.64d | 0d | Contract Price Original Scope [3767.01 SAR]; Labour [32.16 h]; HDPE Pipes 280 MM [16] | 3,767.01 |  | RD4 |
| RSZone 3Road 04Irrigation NetworkA93790 |  | Zone 3 - Road 4 - Lateral Irrigation Network - HDPE Pipes 280 MM - Test | 2d | 2026-12-30 | 2027-01-02 | RSZone 3Road 04Irrigation NetworkA93780 |  |  |  | 0.64d | 0d | Contract Price Original Scope [538.14 SAR]; Pump Operator [20 h]; Equipment Operator [20 h]; Labour [4.59 h]; HDPE Pipes 280 MM [16] | 538.14 |  | RD4 |
| RSZone 3Road 04Irrigation NetworkA93800 |  | Zone 3 - Road 4 - Lateral Irrigation Network - HDPE Pipes 280 MM - Backfilling | 2d | 2027-01-02 | 2027-01-04 | RSZone 3Road 04Irrigation NetworkA93790 |  |  |  | 0.64d | 0d | Contract Price Original Scope [538.14 SAR]; Excavator Operator [20 h]; Compactor Operator [20 h]; Dump Truck Operator [20 h]; Water Truck Operator [20 h]; Labour [4.59 h]; HDPE Pipes 280 MM [16] | 538.14 |  | RD4 |

| ID | WBS | Activity | Duration | Start | Finish | Predecessors | Complete | Planned start | Planned finish | Total float | Free float | Resources | Cost | Actual cost | MODON |
| --- | --- | --- | --- | --- | --- | --- | --- | --- | --- | --- | --- | --- | --- | --- | --- |
|  | 5 | **HDPE Pipes 630 MM** |  | 2026-03-26 | 2026-11-12 |  |  |  |  |  |  |  |  |  |  |
| RSZone 3Road 04Irrigation NetworkA79110 |  | Zone 3 - Road 4 - Lateral Irrigation Network - HDPE Pipes 630 MM - Excavation | 4d | 2026-03-26 A | 2026-03-30 A | RSZone 3Road 04Irrigation NetworkA93740 | 100% | 2026-03-26 | 2026-03-31 |  |  | Contract Price Original Scope [19498.6 SAR]; Excavator Operator [30 h]; Dump Truck Operator [30 h]; Labour [166.47 h]; HDPE Pipes 630 MM [102] | 19,498.63 | 19,498.63 | RD4 |
| RSZone 3Road 04Irrigation NetworkA79120 |  | Zone 3 - Road 4 - Lateral Irrigation Network - HDPE Pipes 630 MM - Installation | 2d | 2026-03-31 A | 2026-04-01 A | RSZone 3Road 04Irrigation NetworkA79110 | 100% |  |  |  |  | Contract Price Original Scope [136490 SAR]; Labour [1165.28 h]; HDPE Pipes 630 MM [102] | 136,490.38 | 136,490.38 | RD4 |
| RSZone 3Road 04Irrigation NetworkA79130 |  | Zone 3 - Road 4 - Lateral Irrigation Network - HDPE Pipes 630 MM - Test | 2d | 2026-11-09 | 2026-11-10 | RSZone 3Road 04Irrigation NetworkA79120 |  |  |  | 97.4d | 0d | Contract Price Original Scope [19498.6 SAR]; Pump Operator [20 h]; Equipment Operator [20 h]; Labour [166.47 h]; HDPE Pipes 630 MM [102] | 19,498.63 |  | RD4 |
| RSZone 3Road 04Irrigation NetworkA79140 |  | Zone 3 - Road 4 - Lateral Irrigation Network - HDPE Pipes 630 MM - Backfilling | 2d | 2026-11-11 | 2026-11-12 | RSZone 3Road 04Irrigation NetworkA79130 |  |  |  | 97.4d | 96.76d | Contract Price Original Scope [19498.6 SAR]; Excavator Operator [20 h]; Compactor Operator [20 h]; Dump Truck Operator [20 h]; Water Truck Operator [20 h]; Labour [166.47 h]; HDPE Pipes 630 MM [102] | 19,498.63 |  | RD4 |
|  | 8 | **End Cap** |  | 2027-01-04 | 2027-01-07 |  |  |  |  |  |  |  |  |  |  |
| RSZone 3Road 04Irrigation NetworkA80690 |  | Zone 3 - Road 4 - Lateral Irrigation Network - End Cap - Installation | 3d | 2027-01-04 | 2027-01-07 | RSZone 3Road 04Irrigation NetworkA93800 |  |  |  | 0.64d | 0d | Contract Price Original Scope [1867.95 SAR]; Labour [15.95 h]; Fittings - End Caps (all sizes) [5] | 1,867.95 |  | RD4 |
|  | 7 | **Tees** |  | 2026-09-02 | 2026-11-10 |  |  |  |  |  |  |  |  |  |  |
| RSZone 3Road 04Irrigation NetworkA80530- |  | Zone 3 - Road 4 - Lateral Irrigation Network - Tees - Installation (old) | 51d | 2026-09-02 A | 2026-11-01 A | RSZone 3Road 04Irrigation NetworkA79120 | 100% |  |  |  |  | Contract Price Original Scope [3072.12 SAR]; Labour [26.23 h]; Fittings - Tees (all sizes) [2] | 3,072.12 | 3,072.12 | RD4 |
| RSZone 3Road 04Irrigation NetworkA80530- |  | Zone 3 - Road 4 - Lateral Irrigation Network - Tees - Installation (old) | 2d | 2026-11-09 | 2026-11-10 | RSZone 3Road 04Irrigation NetworkA80530- |  |  |  | 99.4d | 98.76d | Contract Price Original Scope [6144.24 SAR]; Labour [52.46 h]; Fittings - Tees (all sizes) [4] | 6,144.24 |  | RD4 |
|  | 1 | **Buried Valves** |  | 2026-03-31 | 2026-11-16 |  |  |  |  |  |  |  |  |  |  |
| RSZone 3Road 04Irrigation NetworkA79840 |  | Zone 3 - Road 4 - Lateral Irrigation Network - Buried Valves - Excavation | 5d | 2026-03-31 A | 2026-04-05 A | RSZone 3Road 04Irrigation NetworkA79120 | 100% |  |  |  |  | Contract Price Original Scope [1950.44 SAR]; Excavator Operator [30 h]; Dump Truck Operator [30 h]; Labour [16.65 h]; Buried Valves [29] | 1,950.44 | 1,950.44 | RD4 |
| RSZone 3Road 04Irrigation NetworkA79850 |  | Zone 3 - Road 4 - Lateral Irrigation Network - Buried Valves - Installation | 2d | 2026-04-06 A | 2026-04-07 A | RSZone 3Road 04Irrigation NetworkA79840 | 100% |  |  |  |  | Contract Price Original Scope [25355.8 SAR]; Labour [216.47 h]; Buried Valves [29] | 25,355.75 | 25,355.75 | RD4 |
| RSZone 3Road 04Irrigation NetworkA79860 |  | Zone 3 - Road 4 - Lateral Irrigation Network - Buried Valves - Surface Box | 3d | 2026-11-09 | 2026-11-11 | RSZone 3Road 04Irrigation NetworkA79850 |  |  |  | 94.4d | 0d | Labour; Buried Valves [29] |  |  | RD4 |
| RSZone 3Road 04Irrigation NetworkA79870 |  | Zone 3 - Road 4 - Lateral Irrigation Network - Buried Valves - Test | 2d | 2026-11-12 | 2026-11-14 | RSZone 3Road 04Irrigation NetworkA79860 |  |  |  | 94.4d | 0d | Contract Price Original Scope [7801.77 SAR]; Pump Operator [20 h]; Equipment Operator [20 h]; Labour [66.61 h]; Buried Valves [29] | 7,801.77 |  | RD4 |
| RSZone 3Road 04Irrigation NetworkA79880 |  | Zone 3 - Road 4 - Lateral Irrigation Network - Buried Valves - Backfilling | 2d | 2026-11-15 | 2026-11-16 | RSZone 3Road 04Irrigation NetworkA79870 |  |  |  | 94.4d | 93.76d | Contract Price Original Scope [3900.88 SAR]; Excavator Operator [20 h]; Compactor Operator [20 h]; Dump Truck Operator [20 h]; Water Truck Operator [20 h]; Labour [33.3 h]; Buried Valves [29] | 3,900.88 |  | RD4 |
|  | 2 | **Butterfly Valves 500 MM** |  | 2027-01-04 | 2027-01-13 |  |  |  |  |  |  |  |  |  |  |
| RSZone 3Road 04Irrigation NetworkA80460 |  | Zone 3 - Road 4 - Lateral Irrigation Network - Butterfly Valves 500 MM - Surface Box | 3d | 2027-01-04 | 2027-01-07 | RSZone 3Road 04Irrigation NetworkA80690 SS |  |  |  | 0.64d | 0d | Labour; Butterfly Valves [9] |  |  | RD4 |
| RSZone 3Road 04Irrigation NetworkA80450 |  | Zone 3 - Road 4 - Lateral Irrigation Network - Butterfly Valves 500 MM - Installation | 3d | 2027-01-07 | 2027-01-11 | RSZone 3Road 04Irrigation NetworkA80460 |  |  |  | 44.94d | 0d | Contract Price Original Scope [81759.1 SAR]; Labour [698.02 h]; Butterfly Valves [9] | 81,759.06 |  | RD4 |
| RSZone 3Road 04Irrigation NetworkA80470 |  | Zone 3 - Road 4 - Lateral Irrigation Network - Butterfly Valves 500 MM - Test | 2d | 2027-01-11 | 2027-01-13 | RSZone 3Road 04Irrigation NetworkA80450 |  |  |  | 44.94d | 44.3d | Contract Price Original Scope [35039.6 SAR]; Pump Operator [20 h]; Equipment Operator [20 h]; Labour [299.15 h]; Butterfly Valves [9] | 35,039.6 |  | RD4 |
|  | 13 | **Butterfly Valves 630 MM** |  | 2027-01-04 | 2027-01-13 |  |  |  |  |  |  |  |  |  |  |
| RSZone 3Road 04Irrigation NetworkA93820 |  | Zone 3 - Road 4 - Lateral Irrigation Network - Butterfly Valves 630 MM - Surface Box | 3d | 2027-01-04 | 2027-01-07 | RSZone 3Road 04Irrigation NetworkA80460 SS |  |  |  | 0.64d | 0d | Labour; Butterfly Valves [2] |  |  | RD4 |
| RSZone 3Road 04Irrigation NetworkA93810 |  | Zone 3 - Road 4 - Lateral Irrigation Network - Butterfly Valves 630 MM - Installation | 3d | 2027-01-07 | 2027-01-11 | RSZone 3Road 04Irrigation NetworkA93820 |  |  |  | 44.94d | 0d | Contract Price Original Scope [18168.7 SAR]; Labour [155.11 h]; Butterfly Valves [2] | 18,168.68 |  | RD4 |
| RSZone 3Road 04Irrigation NetworkA93830 |  | Zone 3 - Road 4 - Lateral Irrigation Network - Butterfly Valves 630 MM - Test | 2d | 2027-01-11 | 2027-01-13 | RSZone 3Road 04Irrigation NetworkA93810 |  |  |  | 44.94d | 44.3d | Contract Price Original Scope [7786.58 SAR]; Pump Operator [20 h]; Equipment Operator [20 h]; Labour [66.48 h]; Butterfly Valves [2] | 7,786.58 |  | RD4 |

| ID | WBS | Activity | Duration | Start | Finish | Predecessors | Complete | Planned start | Planned finish | Total float | Free float | Resources | Cost | Actual cost | MODON |
| --- | --- | --- | --- | --- | --- | --- | --- | --- | --- | --- | --- | --- | --- | --- | --- |
|  | 6 | **Air Valves 355 MM** |  | 2027-01-04 | 2027-01-13 |  |  |  |  |  |  |  |  |  |  |
| RSZone 3Road 04Irrigation NetworkA80360 |  | Zone 3 - Road 4 - Lateral Irrigation Network - Air Valves 355 MM - Surface Box | 3d | 2027-01-04 | 2027-01-07 | RSZone 3Road 04Irrigation NetworkA93820 SS |  |  |  | 0.64d | 0d | Labour; Washout / Air / FlowMeter Valves [1] |  |  | RD4 |
| RSZone 3Road 04Irrigation NetworkA80350 |  | Zone 3 - Road 4 - Lateral Irrigation Network - Air Valves 355 MM - Installation | 3d | 2027-01-07 | 2027-01-11 | RSZone 3Road 04Irrigation NetworkA80360 |  |  |  | 44.94d | 0d | Labour; Washout / Air / FlowMeter Valves [1] |  |  | RD4 |
| RSZone 3Road 04Irrigation NetworkA80370 |  | Zone 3 - Road 4 - Lateral Irrigation Network - Air Valves 355 MM - Test | 2d | 2027-01-11 | 2027-01-13 | RSZone 3Road 04Irrigation NetworkA80350 |  |  |  | 44.94d | 44.3d | Pump Operator [20 h]; Equipment Operator [20 h]; Labour; Washout / Air / FlowMeter Valves [1] |  |  | RD4 |
|  | 14 | **Air Valves 560 MM** |  | 2027-01-07 | 2027-01-16 |  |  |  |  |  |  |  |  |  |  |
| RSZone 3Road 04Irrigation NetworkA93850 |  | Zone 3 - Road 4 - Lateral Irrigation Network - Air Valves 560 MM - Surface Box | 2.1d | 2027-01-07 | 2027-01-10 | RSZone 3Road 04Irrigation NetworkA80360 |  |  |  | 0.64d | 0d | Labour; Washout / Air / FlowMeter Valves [2] |  |  | RD4 |
| RSZone 3Road 04Irrigation NetworkA93840 |  | Zone 3 - Road 4 - Lateral Irrigation Network - Air Valves 560 MM - Installation | 3d | 2027-01-10 | 2027-01-13 | RSZone 3Road 04Irrigation NetworkA93850 |  |  |  | 42.84d | 0d | Labour; Washout / Air / FlowMeter Valves [2] |  |  | RD4 |
| RSZone 3Road 04Irrigation NetworkA93860 |  | Zone 3 - Road 4 - Lateral Irrigation Network - Air Valves 560 MM - Test | 2d | 2027-01-13 | 2027-01-16 | RSZone 3Road 04Irrigation NetworkA93840 |  |  |  | 42.84d | 42.2d | Pump Operator [20 h]; Equipment Operator [20 h]; Labour; Washout / Air / FlowMeter Valves [2] |  |  | RD4 |
|  | 15 | **Air Valves Air Valves 710 MM** |  | 2027-01-10 | 2027-01-19 |  |  |  |  |  |  |  |  |  |  |
| RSZone 3Road 04Irrigation NetworkA93880 |  | Zone 3 - Road 4 - Lateral Irrigation Network - Air Valves Air Valves 710 MM - Surface Box | 3d | 2027-01-10 | 2027-01-13 | RSZone 3Road 04Irrigation NetworkA93850 |  |  |  | 0.64d | 0d | Labour; Washout / Air / FlowMeter Valves [2] |  |  | RD4 |
| RSZone 3Road 04Irrigation NetworkA93870 |  | Zone 3 - Road 4 - Lateral Irrigation Network - Air Valves Air Valves 710 MM - Installation | 3d | 2027-01-13 | 2027-01-17 | RSZone 3Road 04Irrigation NetworkA93880 |  |  |  | 39.84d | 0d | Labour; Washout / Air / FlowMeter Valves [2] |  |  | RD4 |
| RSZone 3Road 04Irrigation NetworkA93890 |  | Zone 3 - Road 4 - Lateral Irrigation Network - Air Valves Air Valves 710 MM - Test | 2d | 2027-01-17 | 2027-01-19 | RSZone 3Road 04Irrigation NetworkA93870 |  |  |  | 39.84d | 39.2d | Pump Operator [20 h]; Equipment Operator [20 h]; Labour; Washout / Air / FlowMeter Valves [2] |  |  | RD4 |
|  | 4 | **Washout Valves 280 MM** |  | 2027-01-13 | 2027-01-23 |  |  |  |  |  |  |  |  |  |  |
| RSZone 3Road 04Irrigation NetworkA80260 |  | Zone 3 - Road 4 - Lateral Irrigation Network - Washout Valves 280 MM - Surface Box | 3d | 2027-01-13 | 2027-01-17 | RSZone 3Road 04Irrigation NetworkA93880 |  |  |  | 0.64d | 0d | Labour; Washout / Air / FlowMeter Valves [5] |  |  | RD4 |
| RSZone 3Road 04Irrigation NetworkA80250 |  | Zone 3 - Road 4 - Lateral Irrigation Network - Washout Valves 280 MM - Installation | 3d | 2027-01-17 | 2027-01-20 | RSZone 3Road 04Irrigation NetworkA80260 |  |  |  | 36.84d | 0d | Labour; Washout / Air / FlowMeter Valves [5] |  |  | RD4 |
| RSZone 3Road 04Irrigation NetworkA80270 |  | Zone 3 - Road 4 - Lateral Irrigation Network - Washout Valves 280 MM - Test | 2d | 2027-01-20 | 2027-01-23 | RSZone 3Road 04Irrigation NetworkA80250 |  |  |  | 36.84d | 36.2d | Pump Operator [20 h]; Equipment Operator [20 h]; Labour; Washout / Air / FlowMeter Valves [5] |  |  | RD4 |
|  | 16 | **Washout Valves 500 MM** |  | 2027-01-17 | 2027-01-26 |  |  |  |  |  |  |  |  |  |  |
| RSZone 3Road 04Irrigation NetworkA93910 |  | Zone 3 - Road 4 - Lateral Irrigation Network - Washout Valves 500 MM - Surface Box | 3d | 2027-01-17 | 2027-01-20 | RSZone 3Road 04Irrigation NetworkA80260 |  |  |  | 0.64d | 0d | Labour; Washout / Air / FlowMeter Valves [5] |  |  | RD4 |
| RSZone 3Road 04Irrigation NetworkA93900 |  | Zone 3 - Road 4 - Lateral Irrigation Network - Washout Valves 500 MM - Installation | 3d | 2027-01-20 | 2027-01-24 | RSZone 3Road 04Irrigation NetworkA93910 |  |  |  | 0.64d | 0d | Labour; Washout / Air / FlowMeter Valves [5] |  |  | RD4 |
| RSZone 3Road 04Irrigation NetworkA93920 |  | Zone 3 - Road 4 - Lateral Irrigation Network - Washout Valves 500 MM - Test | 2d | 2027-01-24 | 2027-01-26 | RSZone 3Road 04Irrigation NetworkA93900 |  |  |  | 0.64d | 0d | Pump Operator [20 h]; Equipment Operator [20 h]; Labour; Washout / Air / FlowMeter Valves [5] |  |  | RD4 |
|  | 3 | **Valve Champer** |  | 2026-03-29 | 2027-02-24 |  |  |  |  |  |  |  |  |  |  |
|  | 1 | **Isolation Champer** |  | 2026-06-18 | 2026-11-23 |  |  |  |  |  |  |  |  |  |  |
| RSZone 3Road 04Irrigation NetworkA79470 |  | Zone 3 - Road 4 - Lateral Irrigation Network - Isolation Champer - Excavation | 4d | 2026-06-18 A | 2026-06-22 A | RSZone 3Road 04Irrigation NetworkA79850 | 100% | 2026-06-18 | 2026-06-23 |  |  | Contract Price Original Scope [6372.33 SAR]; Labour [54.4 h]; Isolation Chambers [3] | 6,372.33 | 6,372.33 | RD4 |
| RSZone 3Road 04Irrigation NetworkA79480 |  | Zone 3 - Road 4 - Lateral Irrigation Network - Isolation Champer - Footings | 5d | 2026-06-23 A | 2026-06-28 A | RSZone 3Road 04Irrigation NetworkA79470 | 100% |  |  |  |  | Contract Price Original Scope [19117 SAR]; Labour [163.21 h]; Isolation Chambers [3] | 19,117 | 19,117 | RD4 |
| RSZone 3Road 04Irrigation NetworkA79490 |  | Zone 3 - Road 4 - Lateral Irrigation Network - Isolation Champer - Walls | 6d | 2026-06-29 A | 2026-07-05 A | RSZone 3Road 04Irrigation NetworkA79480 | 100% |  |  |  |  | Contract Price Original Scope [25489.3 SAR]; Labour [217.61 h]; Isolation Chambers [3] | 25,489.33 | 25,489.33 | RD4 |
| RSZone 3Road 04Irrigation NetworkA79500- |  | Zone 3 - Road 4 - Lateral Irrigation Network - Isolation Champer - Slab (old) | 48d | 2026-09-06 A | 2026-11-01 A | RSZone 3Road 04Irrigation NetworkA79490 | 100% |  |  |  |  | Contract Price Original Scope [44606.3 SAR]; Labour [380.83 h]; Isolation Chambers [3] | 44,606.32 | 44,606.32 | RD4 |
| RSZone 3Road 04Irrigation NetworkA79500- |  | Zone 3 - Road 4 - Lateral Irrigation Network - Isolation Champer - Slab (old) | 1.88d | 2026-11-09 | 2026-11-10 | RSZone 3Road 04Irrigation NetworkA79500- |  |  |  | 88.53d | 0d | Contract Price Original Scope [74343.9 SAR]; Labour [634.71 h]; Isolation Chambers [5] | 74,343.87 |  | RD4 |
| RSZone 3Road 04Irrigation NetworkA79520 |  | Zone 3 - Road 4 - Lateral Irrigation Network - Isolation Champer - Internal Isolation | 3d | 2026-11-10 | 2026-11-14 | RSZone 3Road 04Irrigation NetworkA79500- |  |  |  | 88.53d | 0d | Contract Price Original Scope [72219.8 SAR]; Labour [616.57 h]; Isolation Chambers [34] | 72,219.76 |  | RD4 |
| RSZone 3Road 04Irrigation NetworkA79510 |  | Zone 3 - Road 4 - Lateral Irrigation Network - Isolation Champer - D.I Cover | 3d | 2026-11-14 | 2026-11-17 | RSZone 3Road 04Irrigation NetworkA79520 |  |  |  | 88.53d | 0d | Contract Price Original Scope [144440 SAR]; Labour [1233.15 h]; Isolation Chambers [34] | 144,439.53 |  | RD4 |
| RSZone 3Road 04Irrigation NetworkA79530 |  | Zone 3 - Road 4 - Lateral Irrigation Network - Isolation Champer - External Isolation | 3d | 2026-11-17 | 2026-11-21 | RSZone 3Road 04Irrigation NetworkA79510 |  |  |  | 88.53d | 0d | Contract Price Original Scope [6372.33 SAR]; Labour [54.4 h]; Isolation Chambers [3] | 6,372.33 |  | RD4 |
| RSZone 3Road 04Irrigation NetworkA79540 |  | Zone 3 - Road 4 - Lateral Irrigation Network - Isolation Champer - Backfilling | 2d | 2026-11-21 | 2026-11-23 | RSZone 3Road 04Irrigation NetworkA79530 |  |  |  | 88.53d | 87.89d | Contract Price Original Scope [6372.33 SAR]; Excavator Operator [20 h]; Compactor Operator [20 h]; Dump Truck Operator [20 h]; Water Truck Operator [20 h]; Labour [54.4 h]; Isolation Chambers [3] | 6,372.33 |  | RD4 |

| ID | WBS | Activity | Duration | Start | Finish | Predecessors | Complete | Planned start | Planned finish | Total float | Free float | Resources | Cost | Actual cost | MODON |
| --- | --- | --- | --- | --- | --- | --- | --- | --- | --- | --- | --- | --- | --- | --- | --- |
|  | 2 | **Air Valves Champer** |  | 2026-06-21 | 2026-11-18 |  |  |  |  |  |  |  |  |  |  |
| RSZone 3Road 04Irrigation NetworkA79550 |  | Zone 3 - Road 4 - Lateral Irrigation Network - Air Valves Champer - Excavation | 4d | 2026-06-21 A | 2026-06-24 A | RSZone 3Road 04Irrigation NetworkA79490 | 100% |  |  |  |  | Contract Price Original Scope [3458.31 SAR]; Labour [29.53 h]; Air Valve Chambers [3] | 3,458.31 | 3,458.31 | RD4 |
| RSZone 3Road 04Irrigation NetworkA79560 |  | Zone 3 - Road 4 - Lateral Irrigation Network - Air Valves Champer - Footings | 6d | 2026-06-25 A | 2026-07-01 A | RSZone 3Road 04Irrigation NetworkA79550 | 100% | 2026-06-25 | 2026-07-02 |  |  | Contract Price Original Scope [10374.9 SAR]; Labour [88.58 h]; Air Valve Chambers [3] | 10,374.94 | 10,374.94 | RD4 |
| RSZone 3Road 04Irrigation NetworkA79570 |  | Zone 3 - Road 4 - Lateral Irrigation Network - Air Valves Champer - Walls | 5d | 2026-07-02 A | 2026-07-07 A | RSZone 3Road 04Irrigation NetworkA79560 | 100% | 2026-07-02 | 2026-07-08 |  |  | Contract Price Original Scope [13833.2 SAR]; Labour [118.1 h]; Air Valve Chambers [3] | 13,833.25 | 13,833.25 | RD4 |
| RSZone 3Road 04Irrigation NetworkA79610 |  | Zone 3 - Road 4 - Lateral Irrigation Network - Air Valves Champer - External Isolation | 4d | 2026-07-12 A | 2026-07-15 A | RSZone 3Road 04Irrigation NetworkA79570 | 100% |  |  |  |  | Contract Price Original Scope [3458.31 SAR]; Labour [29.53 h]; Air Valve Chambers [3] | 3,458.31 | 3,458.31 | RD4 |
| RSZone 3Road 04Irrigation NetworkA79600- |  | Zone 3 - Road 4 - Lateral Irrigation Network - Air Valves Champer - Internal Isolation (old) | 48d | 2026-09-06 A | 2026-11-01 A | RSZone 3Road 04Irrigation NetworkA79610 | 100% |  |  |  |  | Contract Price Original Scope [3458.31 SAR]; Labour [29.53 h]; Air Valve Chambers [3] | 3,458.31 | 3,458.31 | RD4 |
| RSZone 3Road 04Irrigation NetworkA79600- |  | Zone 3 - Road 4 - Lateral Irrigation Network - Air Valves Champer - Internal Isolation (old) | 1d | 2026-11-09 | 2026-11-09 | RSZone 3Road 04Irrigation NetworkA79600- |  |  |  | 92.4d | 0d | Contract Price Original Scope [1152.77 SAR]; Labour [9.84 h]; Air Valve Chambers [1] | 1,152.77 |  | RD4 |
| RSZone 3Road 04Irrigation NetworkA79580 |  | Zone 3 - Road 4 - Lateral Irrigation Network - Air Valves Champer - Slab | 3d | 2026-11-10 | 2026-11-12 | RSZone 3Road 04Irrigation NetworkA79600- |  |  |  | 92.4d | 0d | Contract Price Original Scope [24208.2 SAR]; Labour [206.68 h]; Air Valve Chambers [3] | 24,208.19 |  | RD4 |
| RSZone 3Road 04Irrigation NetworkA79590 |  | Zone 3 - Road 4 - Lateral Irrigation Network - Air Valves Champer - D.I Cover | 3d | 2026-11-14 | 2026-11-16 | RSZone 3Road 04Irrigation NetworkA79580 |  |  |  | 92.4d | 0d | Contract Price Original Scope [9222.17 SAR]; Labour [78.73 h]; Air Valve Chambers [4] | 9,222.17 |  | RD4 |
| RSZone 3Road 04Irrigation NetworkA79620 |  | Zone 3 - Road 4 - Lateral Irrigation Network - Air Valves Champer - Backfilling | 2d | 2026-11-17 | 2026-11-18 | RSZone 3Road 04Irrigation NetworkA79590 |  |  |  | 92.4d | 91.76d | Contract Price Original Scope [3458.31 SAR]; Excavator Operator [20 h]; Compactor Operator [20 h]; Dump Truck Operator [20 h]; Water Truck Operator [20 h]; Labour [29.53 h]; Air Valve Chambers [3] | 3,458.31 |  | RD4 |
|  | 3 | **Washout Valves Champer** |  | 2027-01-26 | 2027-02-24 |  |  |  |  |  |  |  |  |  |  |
| RSZone 3Road 04Irrigation NetworkA79630 |  | Zone 3 - Road 4 - Lateral Irrigation Network - Washout Valves Champer - Excavation | 3d | 2027-01-26 | 2027-01-30 | RSZone 3Road 04Irrigation NetworkA93920 |  |  |  | 0.64d | 0d | Contract Price Original Scope [4989.07 SAR]; Labour [42.59 h]; Washout Chambers [3] | 4,989.07 |  | RD4 |
| RSZone 3Road 04Irrigation NetworkA79640 |  | Zone 3 - Road 4 - Lateral Irrigation Network - Washout Valves Champer - Footings | 3d | 2027-01-30 | 2027-02-02 | RSZone 3Road 04Irrigation NetworkA79630 |  |  |  | 0.64d | 0d | Contract Price Original Scope [14967.2 SAR]; Labour [127.78 h]; Washout Chambers [3] | 14,967.2 |  | RD4 |
| RSZone 3Road 04Irrigation NetworkA79660 |  | Zone 3 - Road 4 - Lateral Irrigation Network - Washout Valves Champer - Slab | 3d | 2027-02-02 | 2027-02-06 | RSZone 3Road 04Irrigation NetworkA79640 |  |  |  | 0.64d | 0d | Contract Price Original Scope [34923.5 SAR]; Labour [298.16 h]; Washout Chambers [3] | 34,923.47 |  | RD4 |
| RSZone 3Road 04Irrigation NetworkA79650 |  | Zone 3 - Road 4 - Lateral Irrigation Network - Washout Valves Champer - Walls | 3d | 2027-02-06 | 2027-02-09 | RSZone 3Road 04Irrigation NetworkA79660 |  |  |  | 0.64d | 0d | Contract Price Original Scope [19956.3 SAR]; Labour [170.38 h]; Washout Chambers [3] | 19,956.27 |  | RD4 |
| RSZone 3Road 04Irrigation NetworkA79680 |  | Zone 3 - Road 4 - Lateral Irrigation Network - Washout Valves Champer - Internal Isolation | 3d | 2027-02-09 | 2027-02-13 | RSZone 3Road 04Irrigation NetworkA79650 |  |  |  | 0.64d | 0d | Contract Price Original Scope [4989.07 SAR]; Labour [42.59 h]; Washout Chambers [3] | 4,989.07 |  | RD4 |
| RSZone 3Road 04Irrigation NetworkA79670 |  | Zone 3 - Road 4 - Lateral Irrigation Network - Washout Valves Champer - D.I Cover | 3d | 2027-02-13 | 2027-02-16 | RSZone 3Road 04Irrigation NetworkA79680 |  |  |  | 0.64d | 0d | Contract Price Original Scope [9978.13 SAR]; Labour [85.19 h]; Washout Chambers [3] | 9,978.13 |  | RD4 |
| RSZone 3Road 04Irrigation NetworkA79690 |  | Zone 3 - Road 4 - Lateral Irrigation Network - Washout Valves Champer - External Isolation | 3d | 2027-02-16 | 2027-02-20 | RSZone 3Road 04Irrigation NetworkA79670 |  |  |  | 0.64d | 0d | Contract Price Original Scope [4989.07 SAR]; Labour [42.59 h]; Washout Chambers [3] | 4,989.07 |  | RD4 |
| RSZone 3Road 04Irrigation NetworkA79700 |  | Zone 3 - Road 4 - Lateral Irrigation Network - Washout Valves Champer - Backfilling | 2d | 2027-02-20 | 2027-02-24 | RSZone 3Road 04Irrigation NetworkA79690 |  |  |  | 0.64d | 0d | Contract Price Original Scope [4989.07 SAR]; Excavator Operator [20 h]; Compactor Operator [20 h]; Dump Truck Operator [20 h]; Water Truck Operator [20 h]; Labour [42.59 h]; Washout Chambers [3] | 4,989.07 |  | RD4 |
|  | 4 | **FlowMeter Valves Champer** |  | 2026-03-29 | 2026-11-11 |  |  |  |  |  |  |  |  |  |  |
| RSZone 3Road 04Irrigation NetworkA79740 |  | Zone 3 - Road 4 - Lateral Irrigation Network - FlowMeter Valves Champer - Slab | 3d | 2026-03-29 A | 2026-03-31 A | RSZone 3Road 04Irrigation NetworkA79610 | 100% |  |  |  |  | Contract Price Original Scope [11844.1 SAR]; Labour [101.12 h]; FlowMeter Chambers [1] | 11,844.08 | 11,844.08 | RD4 |
| RSZone 3Road 04Irrigation NetworkA79760 |  | Zone 3 - Road 4 - Lateral Irrigation Network - FlowMeter Valves Champer - Internal Isolation | 5d | 2026-04-01 A | 2026-04-06 A | RSZone 3Road 04Irrigation NetworkA79740 | 100% |  |  |  |  | Contract Price Original Scope [1692.01 SAR]; Labour [14.45 h]; FlowMeter Chambers [1] | 1,692.01 | 1,692.01 | RD4 |
| RSZone 3Road 04Irrigation NetworkA79750 |  | Zone 3 - Road 4 - Lateral Irrigation Network - FlowMeter Valves Champer - D.I Cover | 3d | 2026-11-09 | 2026-11-11 | RSZone 3Road 04Irrigation NetworkA79760 |  |  |  | 86.5d | 0d | Contract Price Original Scope [3384.02 SAR]; Labour [28.89 h]; FlowMeter Chambers [1] | 3,384.02 |  | RD4 |
|  | 10 | **Bedding** |  | 2026-09-07 | 2026-11-09 |  |  |  |  |  |  |  |  |  |  |
| RSZone 3Road 04Irrigation NetworkA80820- |  | Zone 3 - Road 4 - Lateral Irrigation Network - Bedding - Bedding (old) | 47d | 2026-09-07 A | 2026-11-01 A | RSZone 3Road 04Irrigation NetworkA79760 | 100% |  |  |  |  | Contract Price Original Scope [3941.36 SAR]; Compactor Operator [17.9 h]; Equipment Operator [17.9 h]; Water Truck Operator [17.9 h]; Labour [33.65 h]; Bedding [153.04] | 3,941.36 | 3,941.36 | RD4 |
| RSZone 3Road 04Irrigation NetworkA80820- |  | Zone 3 - Road 4 - Lateral Irrigation Network - Bedding - Bedding (old) | 1d | 2026-11-09 | 2026-11-09 | RSZone 3Road 04Irrigation NetworkA80820- |  |  |  | 100.4d | 99.76d | Contract Price Original Scope [462.39 SAR]; Compactor Operator [2.1 h]; Equipment Operator [2.1 h]; Water Truck Operator [2.1 h]; Labour [3.95 h]; Bedding [17.95] | 462.39 |  | RD4 |

| ID | WBS | Activity | Duration | Start | Finish | Predecessors | Complete | Remaining | Planned start | Planned finish | Total float | Free float | Resources | Cost | Actual cost | MODON |
| --- | --- | --- | --- | --- | --- | --- | --- | --- | --- | --- | --- | --- | --- | --- | --- | --- |
|  | 9 | **Thrust Block** |  | 2026-09-06 | 2026-11-09 |  |  |  |  |  |  |  |  |  |  |  |
| RSZone 3Road 04Irrigation NetworkA80780- |  | Zone 3 - Road 4 - Lateral Irrigation Network - Thrust Block - Thrust Block (old) | 48d | 2026-09-06 A | 2026-11-01 A | RSZone 3Road 04Irrigation NetworkA79760 | 100% |  |  |  |  |  | Contract Price Original Scope [2043.52 SAR]; Crane Operator [4.33 h]; Pump Operator [4.33 h]; Equipment Operator [4.33 h]; Labour [17.45 h]; Thrust Blocks [2] | 2,043.52 | 2,043.52 | RD4 |
| RSZone 3Road 04Irrigation NetworkA80780- |  | Zone 3 - Road 4 - Lateral Irrigation Network - Thrust Block - Thrust Block (old) | 1d | 2026-11-09 | 2026-11-09 | RSZone 3Road 04Irrigation NetworkA80780- |  |  |  |  | 100.4d | 99.76d | Contract Price Original Scope [4087.04 SAR]; Crane Operator [8.67 h]; Pump Operator [8.67 h]; Equipment Operator [8.67 h]; Labour [34.89 h]; Thrust Blocks [4] | 4,087.04 |  | RD4 |
|  | 2 | **Local Road** |  | 2027-02-02 | 2027-03-03 |  |  |  |  |  |  |  |  |  |  |  |
| RSZone 3Road 04Local RoadA81050 |  | Zone 3 - Road 4 - Lateral Irrigation Network - Local Road - Curb Stone | 21d | 2027-02-02 | 2027-03-03 | RSZone 3Road 03Local RoadA86600 |  |  |  |  | 0.4d | 0d | Contract Price Original Scope [17150.5 SAR]; Compactor Operator [310 h]; Equipment Operator [310 h]; Water Truck Operator [310 h]; Labour [146.42 h]; Local Road - Curbstone [238] | 17,150.53 |  | RD4 |
|  | 9 | **Road Crossing** |  | 2026-09-02 | 2027-03-25 |  |  |  |  |  |  |  |  |  |  |  |
|  | 5 | **Rood Crossing UPVC Selves 300 MM** |  | 2027-02-14 | 2027-03-25 |  |  |  |  |  |  |  |  |  |  |  |
| RSZone 3Road 04Road CrossingA79090 |  | Zone 3 - Road 4 - Road Crossing - Rood Crossing UPVC Selves 300 MM - Rood Crossing UPVC Selves | 21d | 2027-02-14 | 2027-03-25 | RSZone 2Road 10Road CrossingA68980 FS+1d |  |  |  |  | 0.21d | 0d | Contract Price Original Scope [63256.7 SAR]; Excavator Operator [145 h]; Crane Operator [145 h]; Equipment Operator [145 h]; Labour [540.05 h]; Road Crossing Sleeves 300 mm [148] | 63,256.68 |  | RD4 |
|  | 6 | **Rood Crossing UPVC Selves 400MM** |  | 2026-09-02 | 2026-12-01 |  |  |  |  |  |  |  |  |  |  |  |
| RSZone 3Road 04Road CrossingA79100-old |  | Zone 3 - Road 4 - Road Crossing - Rood Crossing UPVC Selves 400MM - Rood Crossing UPVC Selves (old) | 51d | 2026-09-02 A | 2026-11-01 A | RSZone 1Road 26Road CrossingA21850-old | 100% |  |  |  |  |  | Contract Price Original Scope [46071.2 SAR]; Excavator Operator [69.18 h]; Crane Operator [69.18 h]; Equipment Operator [69.18 h]; Labour [393.33 h]; Road Crossing Sleeves 400 mm [78.73] | 46,071.16 | 46,071.16 | RD4 |
| RSZone 3Road 04Road CrossingA79100 |  | Zone 3 - Road 4 - Road Crossing - Rood Crossing UPVC Selves 400MM - Rood Crossing UPVC Selves | 7.58d | 2026-11-22 | 2026-12-01 | RSZone 3Road 04Road CrossingA79100-old, RSZone 1Road 26Road CrossingA21850 |  |  |  |  | 0.21d | 0d | Contract Price Original Scope [50488.5 SAR]; Excavator Operator [75.82 h]; Crane Operator [75.82 h]; Equipment Operator [75.82 h]; Labour [431.04 h]; Road Crossing Sleeves 400 mm [86.27] | 50,488.49 |  | RD4 |
|  | 3 | **Telecom** |  | 2026-06-10 | 2026-12-10 |  |  |  |  |  |  |  |  |  |  |  |
|  | 1 | **Telecom Pipe** |  | 2026-09-23 | 2026-12-10 |  |  |  |  |  |  |  |  |  |  |  |
| RSZone 3Road 04Telecom NetworkA86630-old |  | Zone 3 - Road 4 - Telecom Network - Telecom Pipe - Excavation (old) | 33d | 2026-09-23 A | 2026-11-01 A | RSZone 3Road 03Telecom NetworkA88510-old | 100% |  | 2026-09-24 | 2026-11-02 |  |  | Contract Price Original Scope [5285.3 SAR]; Excavator Operator [2.7 h]; Dump Truck Operator [2.7 h]; Labour [45.12 h]; Telecom Pipe [245.25] | 5,285.3 | 5,285.3 | RD4 |
| RSZone 3Road 04Telecom NetworkA86640-old |  | Zone 3 - Road 4 - Telecom Network - Telecom Pipe - Concrete Pouring (old) | 33d | 2026-09-24 A | 2026-11-01 A | RSZone 3Road 04Telecom NetworkA86630-old | 100% |  | 2026-09-24 | 2026-11-02 |  |  | Contract Price Original Scope [36891.7 SAR]; Crane Operator [1.17 h]; Pump Operator [1.17 h]; Equipment Operator [1.17 h]; Labour [314.96 h]; Telecom Pipe [244.55] | 36,891.7 | 36,891.7 | RD4 |
| RSZone 3Road 04Telecom NetworkA86630 |  | Zone 3 - Road 4 - Telecom Network - Telecom Pipe - Excavation | 2.73d | 2026-11-05 A | 2026-12-03 | RSZone 3Road 04Telecom NetworkA86630-old, RSZone 3Road 03Telecom NetworkA88510 FF | 25% | 2.06d | 2026-11-28 | 2026-11-30 | 79.22d | 0d | Contract Price Original Scope [53440.3 SAR]; Excavator Operator [27.3 h]; Dump Truck Operator [27.3 h]; Labour [456.25 h]; Telecom Pipe [2479.75] | 53,440.26 | 13,213.25 | RD4 |
| RSZone 3Road 04Telecom NetworkA86640 |  | Zone 3 - Road 4 - Telecom Network - Telecom Pipe - Concrete Pouring | 1.18d | 2026-12-05 | 2026-12-06 | RSZone 3Road 04Telecom NetworkA86640-old, RSZone 3Road 04Telecom NetworkA86630 |  |  |  |  | 79.22d | 0d | Contract Price Original Scope [374187 SAR]; Crane Operator [11.83 h]; Pump Operator [11.83 h]; Equipment Operator [11.83 h]; Labour [3194.62 h]; Telecom Pipe [2480.45] | 374,187.23 |  | RD4 |
| RSZone 3Road 04Telecom NetworkA86650 |  | Zone 3 - Road 4 - Telecom Network - Telecom Pipe - Test | 2d | 2026-12-06 | 2026-12-08 | RSZone 3Road 04Telecom NetworkA86640 |  |  |  |  | 79.22d | 0d | Contract Price Original Scope [58725.6 SAR]; Pump Operator [20 h]; Equipment Operator [20 h]; Labour [501.37 h]; Telecom Pipe [2725] | 58,725.56 |  | RD4 |
| RSZone 3Road 04Telecom NetworkA86660 |  | Zone 3 - Road 4 - Telecom Network - Telecom Pipe - Backfilling | 2d | 2026-12-08 | 2026-12-10 | RSZone 3Road 04Telecom NetworkA86650, RSZone 3Road 04Telecom NetworkA86630 |  |  |  |  | 79.22d | 78.82d | Contract Price Original Scope [58725.6 SAR]; Excavator Operator [20 h]; Compactor Operator [20 h]; Dump Truck Operator [20 h]; Water Truck Operator [20 h]; Labour [501.37 h]; Telecom Pipe [2725] | 58,725.56 |  | RD4 |
|  | 12 | **Telecom Duct** |  | 2026-06-10 | 2026-11-12 |  |  |  |  |  |  |  |  |  |  |  |
| RSZone 3Road 04Telecom NetworkA86670 |  | Zone 3 - Road 4 - Telecom Network - Telecom Duct - Excavation | 4d | 2026-06-10 A | 2026-06-14 A | RSZone 2Road 11Telecom NetworkA78250 | 100% |  |  |  |  |  | Contract Price Original Scope [8555.11 SAR]; Excavator Operator [30 h]; Dump Truck Operator [30 h]; Labour [73.04 h]; Telecom Duct (Road Crossing) [393] | 8,555.11 | 8,555.11 | RD4 |
| RSZone 3Road 04Telecom NetworkA86680 |  | Zone 3 - Road 4 - Telecom Network - Telecom Duct - Concrete Pouring | 3d | 2026-06-15 A | 2026-06-17 A | RSZone 3Road 04Telecom NetworkA86670 | 100% |  |  |  |  |  | Contract Price Original Scope [119772 SAR]; Crane Operator [12 h]; Pump Operator [12 h]; Equipment Operator [12 h]; Labour [1022.55 h]; Telecom Duct (Road Crossing) [393] | 119,771.53 | 119,771.53 | RD4 |
| RSZone 3Road 04Telecom NetworkA86690 |  | Zone 3 - Road 4 - Telecom Network - Telecom Duct - Test | 2d | 2026-11-09 | 2026-11-10 | RSZone 3Road 04Telecom NetworkA86680 |  |  |  |  | 102.4d | 0d | Contract Price Original Scope [17110.2 SAR]; Pump Operator [20 h]; Equipment Operator [20 h]; Labour [146.08 h]; Telecom Duct (Road Crossing) [393] | 17,110.22 |  | RD4 |
| RSZone 3Road 04Telecom NetworkA86700 |  | Zone 3 - Road 4 - Telecom Network - Telecom Duct - Backfilling | 2d | 2026-11-11 | 2026-11-12 | RSZone 3Road 04Telecom NetworkA86690 |  |  |  |  | 102.4d | 102d | Contract Price Original Scope [25665.3 SAR]; Excavator Operator [20 h]; Compactor Operator [20 h]; Dump Truck Operator [20 h]; Water Truck Operator [20 h]; Labour [219.12 h]; Telecom Duct (Road Crossing) [393] | 25,665.33 |  | RD4 |

| ID | WBS | Activity | Duration | Start | Finish | Predecessors | Complete | Planned start | Planned finish | Total float | Free float | Resources | Cost | Actual cost | MODON |
| --- | --- | --- | --- | --- | --- | --- | --- | --- | --- | --- | --- | --- | --- | --- | --- |
|  | 2 | **TELECOM MANHOLE** |  | 2026-09-22 | 2026-12-05 |  |  |  |  |  |  |  |  |  |  |
| RSZone 3Road 04Telecom NetworkA86710-old |  | Zone 3 - Road 4 - Telecom Network - TELECOM MANHOLE - Manhole Installation (old) | 34d | 2026-09-22 A | 2026-11-01 A | RSZone 3Road 03Telecom NetworkA88510-old | 100% |  |  |  |  | Contract Price Original Scope [641470 SAR]; Crane Operator [11.15 h]; Boom Truck Operator [11.15 h]; Equipment Operator [11.15 h]; Labour [5476.54 h]; Telecom Manhole [42.74] | 641,469.93 | 641,469.93 | RD4 |
| RSZone 3Road 04Telecom NetworkA86710 |  | Zone 3 - Road 4 - Telecom Network - TELECOM MANHOLE - Manhole Installation | 1d | 2026-12-05 | 2026-12-05 | RSZone 3Road 04Telecom NetworkA86710-old, RSZone 3Road 03Telecom NetworkA88510 |  |  |  | 76.4d | 0d | Contract Price Original Scope [48901.3 SAR]; Crane Operator [0.85 h]; Boom Truck Operator [0.85 h]; Equipment Operator [0.85 h]; Labour [417.49 h]; Telecom Manhole [3.26] | 48,901.29 |  | RD4 |
|  | 5 | **Main Road** |  | 2026-10-21 | 2026-11-09 |  |  |  |  |  |  |  |  |  |  |
| RSZone 3Road 04Main RoadA93930-old |  | Zone 3 - Road 4 - Main Road - Pre-Cast Cerb (old) | 10d | 2026-10-21 A | 2026-11-01 A | Milestone.1 | 100% |  |  |  |  | Contract Price Original Scope [171163 SAR]; Compactor Operator [296.27 h]; Equipment Operator [296.27 h]; Water Truck Operator [296.27 h]; Labour [1461.3 h]; Main Road - Curbstone [2157.05] | 171,162.82 | 171,162.82 | RD4 |
| RSZone 3Road 04Main RoadA93930 |  | Zone 3 - Road 4 - Main Road - Pre-Cast Cerb | 1d | 2026-11-09 | 2026-11-09 | RSZone 3Road 04Main RoadA93930-old |  |  |  | 101.72d | 0d | Contract Price Original Scope [7931.31 SAR]; Compactor Operator [13.73 h]; Equipment Operator [13.73 h]; Water Truck Operator [13.73 h]; Labour [67.71 h]; Main Road - Curbstone [99.95] | 7,931.31 |  | RD4 |
|  | 13 | **Road 5** |  | 2026-04-01 | 2027-03-10 |  |  |  |  |  |  |  |  |  |  |
|  | 4 | **Storm Network** |  | 2027-03-04 | 2027-03-10 |  |  |  |  |  |  |  |  |  |  |
|  | 8 | **Manhole** |  | 2027-03-04 | 2027-03-10 |  |  |  |  |  |  |  |  |  |  |
| RSZone 3Road 05Storm NetworkA93980 |  | Zone 3 - Road 5 - Storm Network - Manhole - COVER INSTALLATION | 3d | 2027-03-04 | 2027-03-10 | RSZone 3Road 04Storm NetworkA95410 |  |  |  | 22.4d | 0d | Contract Price Original Scope [5555.71 SAR]; Crane Operator [7 h]; Boom Truck Operator [7 h]; Equipment Operator [7 h]; Labour [47.43 h]; Manholes GRP (new + DI cover only) [2] | 5,555.71 |  | RD5 |
|  | 1 | **Sewage Network** |  | 2026-06-14 | 2026-06-29 |  |  |  |  |  |  |  |  |  |  |
|  | 5 | **UPVC Pipes** |  | 2026-06-14 | 2026-06-29 |  |  |  |  |  |  |  |  |  |  |
| RSZone 3Road 05Sewage NetworkA86900 |  | Zone 3 - Road 5 - Sewage Network - UPVC Pipes - Excavation | 4.9d | 2026-06-14 A | 2026-06-18 A | RSZone 2Road 18Sewage NetworkA72580 | 100% |  |  |  |  | Contract Price Original Scope [468.34 SAR]; Excavator Operator [30 h]; Dump Truck Operator [30 h]; Labour [4 h]; UPVC Pipes 150 MM [15] | 468.34 | 468.34 | RD5 |
| RSZone 3Road 05Sewage NetworkA86910 |  | Zone 3 - Road 5 - Sewage Network - UPVC Pipes - Installation | 3d | 2026-06-21 A | 2026-06-23 A | RSZone 3Road 05Sewage NetworkA86900 | 100% |  |  |  |  | Contract Price Original Scope [2029.49 SAR]; Excavator Operator [5 h]; Crane Operator [5 h]; Equipment Operator [5 h]; Labour [17.33 h]; UPVC Pipes 150 MM [15] | 2,029.49 | 2,029.49 | RD5 |
| RSZone 3Road 05Sewage NetworkA86920 |  | Zone 3 - Road 5 - Sewage Network - UPVC Pipes - Test | 1.9d | 2026-06-24 A | 2026-06-25 A | RSZone 3Road 05Sewage NetworkA86910 | 100% |  |  |  |  | Contract Price Original Scope [312.23 SAR]; Pump Operator [20 h]; Equipment Operator [20 h]; Labour [2.67 h]; UPVC Pipes 150 MM [15] | 312.23 | 312.23 | RD5 |
| RSZone 3Road 05Sewage NetworkA86930 |  | Zone 3 - Road 5 - Sewage Network - UPVC Pipes - Backfilling | 4d | 2026-06-25 A | 2026-06-29 A | RSZone 3Road 05Sewage NetworkA86920 | 100% | 2026-06-25 | 2026-06-30 |  |  | Contract Price Original Scope [312.23 SAR]; Excavator Operator [20 h]; Compactor Operator [20 h]; Dump Truck Operator [20 h]; Water Truck Operator [20 h]; Labour [2.67 h]; UPVC Pipes 150 MM [15] | 312.23 | 312.23 | RD5 |
|  | 5 | **Potable Water Network** |  | 2026-04-16 | 2026-11-16 |  |  |  |  |  |  |  |  |  |  |
|  | 2 | **Tees** |  | 2026-04-16 | 2026-04-19 |  |  |  |  |  |  |  |  |  |  |
| RSZone 3Road 05Potable NetworkA82590 |  | Zone 3 - Road 5 - Potable Water Network - Tees - Installation | 3d | 2026-04-16 A | 2026-04-19 A | RSZone 3Road 04Potable NetworkA82700 | 100% | 2026-04-16 | 2026-04-20 |  |  | Contract Price Original Scope [5999.2 SAR]; Labour [51.22 h]; Fittings - Tees (all sizes) [2] | 5,999.2 | 5,999.2 | RD5 |
|  | 4 | **Buried Valves** |  | 2026-04-26 | 2026-11-16 |  |  |  |  |  |  |  |  |  |  |
| RSZone 3Road 05Potable NetworkA82740 |  | Zone 3 - Road 5 - Potable Water Network - Buried Valves - Excavation | 4.9d | 2026-04-26 A | 2026-04-30 A | RSZone 3Road 05Potable NetworkA82590 | 100% |  |  |  |  | Contract Price Original Scope [1281.52 SAR]; Excavator Operator [30 h]; Dump Truck Operator [30 h]; Labour [10.94 h]; Buried Valves [8] | 1,281.52 | 1,281.52 | RD5 |
| RSZone 3Road 05Potable NetworkA82750 |  | Zone 3 - Road 5 - Potable Water Network - Buried Valves - Installation | 2d | 2026-05-03 A | 2026-05-04 A | RSZone 3Road 05Potable NetworkA82740 | 100% |  |  |  |  | Contract Price Original Scope [16659.7 SAR]; Labour [142.23 h]; Buried Valves [8] | 16,659.74 | 16,659.74 | RD5 |
| RSZone 3Road 05Potable NetworkA82760 |  | Zone 3 - Road 5 - Potable Water Network - Buried Valves - Surface Box | 3d | 2026-11-09 | 2026-11-11 | RSZone 3Road 05Potable NetworkA82750 |  |  |  | 91.4d | 0d | Labour; Buried Valves [8] |  |  | RD5 |
| RSZone 3Road 05Potable NetworkA82770 |  | Zone 3 - Road 5 - Potable Water Network - Buried Valves - Test | 2d | 2026-11-12 | 2026-11-14 | RSZone 3Road 05Potable NetworkA82760 |  |  |  | 91.4d | 0d | Contract Price Original Scope [5126.07 SAR]; Pump Operator [20 h]; Equipment Operator [20 h]; Labour [43.76 h]; Buried Valves [8] | 5,126.07 |  | RD5 |
| RSZone 3Road 05Potable NetworkA82780 |  | Zone 3 - Road 5 - Potable Water Network - Buried Valves - Backfilling | 2d | 2026-11-15 | 2026-11-16 | RSZone 3Road 05Potable NetworkA82770 |  |  |  | 91.4d | 0d | Contract Price Original Scope [2563.04 SAR]; Excavator Operator [20 h]; Compactor Operator [20 h]; Dump Truck Operator [20 h]; Water Truck Operator [20 h]; Labour [21.88 h]; Buried Valves [8] | 2,563.04 |  | RD5 |

| ID | WBS | Activity | Duration | Start | Finish | Predecessors | Complete | Total float | Free float | Resources | Cost | Actual cost | MODON |
| --- | --- | --- | --- | --- | --- | --- | --- | --- | --- | --- | --- | --- | --- |
|  | 9 | **Thrust Block** |  | 2026-08-23 | 2026-08-24 |  |  |  |  |  |  |  |  |
| RSZone 3Road 05Potable NetworkA94010 |  | Zone 3 - Road 5 - Potable Water Network - Thrust Block - Thrust Block | 2d | 2026-08-23 A | 2026-08-24 A | RSZone 3Road 05Potable NetworkA82750 | 100% |  |  | Contract Price Original Scope [37106.8 SAR]; Crane Operator [13 h]; Pump Operator [13 h]; Equipment Operator [13 h]; Labour [316.8 h]; Thrust Blocks [11] | 37,106.75 | 37,106.75 | RD5 |
|  | 3 | **Lateral Irrigation Network** |  | 2026-04-01 | 2026-11-17 |  |  |  |  |  |  |  |  |
|  | 2 | **Tees** |  | 2026-11-12 | 2026-11-15 |  |  |  |  |  |  |  |  |
| RSZone 3Road 05Irrigation NetworkA86940 |  | Zone 3 - Road 5 - Lateral Irrigation Network - Tees - Installation | 3d | 2026-11-12 | 2026-11-15 | RSZone 3Road 04Irrigation NetworkA79750 |  | 86.5d | 0d | Contract Price Original Scope [3072.12 SAR]; Labour [26.23 h]; Fittings - Tees (all sizes) [2] | 3,072.12 |  | RD5 |
|  | 5 | **Thrust Block** |  | 2026-11-16 | 2026-11-17 |  |  |  |  |  |  |  |  |
| RSZone 3Road 05Irrigation NetworkA80790 |  | Zone 3 - Road 5 - Lateral Irrigation Network - Thrust Block - Thrust Block | 1.5d | 2026-11-16 | 2026-11-17 | RSZone 3Road 05Irrigation NetworkA86940 |  | 86.5d | 0d | Contract Price Original Scope [2043.52 SAR]; Crane Operator [15 h]; Pump Operator [15 h]; Equipment Operator [15 h]; Labour [17.45 h]; Thrust Blocks [2] | 2,043.52 |  | RD5 |
|  | 1 | **Buried Valves** |  | 2026-04-01 | 2026-11-16 |  |  |  |  |  |  |  |  |
| RSZone 3Road 05Irrigation NetworkA79890 |  | Zone 3 - Road 5 - Lateral Irrigation Network - Buried Valves - Excavation | 4d | 2026-04-01 A | 2026-04-05 A | RSZone 3Road 04Irrigation NetworkA79760 | 100% |  |  | Contract Price Original Scope [605.31 SAR]; Excavator Operator [30 h]; Dump Truck Operator [30 h]; Labour [5.17 h]; Buried Valves [9] | 605.31 | 605.31 | RD5 |
| RSZone 3Road 05Irrigation NetworkA79900 |  | Zone 3 - Road 5 - Lateral Irrigation Network - Buried Valves - Installation | 2d | 2026-04-06 A | 2026-04-07 A | RSZone 3Road 05Irrigation NetworkA79890, RSZone 3Road 05Irrigation NetworkA79890 FF | 100% |  |  | Contract Price Original Scope [7869.03 SAR]; Labour [67.18 h]; Buried Valves [9] | 7,869.03 | 7,869.03 | RD5 |
| RSZone 3Road 05Irrigation NetworkA79910 |  | Zone 3 - Road 5 - Lateral Irrigation Network - Buried Valves - Surface Box | 3d | 2026-11-09 | 2026-11-11 | RSZone 3Road 05Irrigation NetworkA79900 |  | 94.4d | 0d | Labour; Buried Valves [9] |  |  | RD5 |
| RSZone 3Road 05Irrigation NetworkA79920 |  | Zone 3 - Road 5 - Lateral Irrigation Network - Buried Valves - Test | 2d | 2026-11-12 | 2026-11-14 | RSZone 3Road 05Irrigation NetworkA79910 |  | 94.4d | 0d | Contract Price Original Scope [2421.24 SAR]; Pump Operator [20 h]; Equipment Operator [20 h]; Labour [20.67 h]; Buried Valves [9] | 2,421.24 |  | RD5 |
| RSZone 3Road 05Irrigation NetworkA79930 |  | Zone 3 - Road 5 - Lateral Irrigation Network - Buried Valves - Backfilling | 2d | 2026-11-15 | 2026-11-16 | RSZone 3Road 05Irrigation NetworkA79920 |  | 94.4d | 93.76d | Contract Price Original Scope [1210.62 SAR]; Excavator Operator [20 h]; Compactor Operator [20 h]; Dump Truck Operator [20 h]; Water Truck Operator [20 h]; Labour [10.34 h]; Buried Valves [9] | 1,210.62 |  | RD5 |
|  | 2 | **Telecom** |  | 2026-09-20 | 2026-12-06 |  |  |  |  |  |  |  |  |
|  | 1 | **Telecom Pipe** |  | 2026-09-20 | 2026-11-18 |  |  |  |  |  |  |  |  |
| RSZone 3Road 05Telecom NetworkA86810-old |  | Zone 3 - Road 5 - Telecom Network - Telecom Pipe - Excavation (old) | 36d | 2026-09-20 A | 2026-11-01 A | RSZone 3Road 04Telecom NetworkA86670 | 100% |  |  | Contract Price Original Scope [282.53 SAR]; Excavator Operator [0.95 h]; Dump Truck Operator [0.95 h]; Labour [2.41 h]; Telecom Pipe [13.11] | 282.53 | 282.53 | RD5 |
| RSZone 3Road 05Telecom NetworkA86820-old |  | Zone 3 - Road 5 - Telecom Network - Telecom Pipe - Concrete Pouring (old) | 34d | 2026-09-22 A | 2026-11-01 A | RSZone 3Road 05Telecom NetworkA86810-old | 100% |  |  | Contract Price Original Scope [1921.66 SAR]; Crane Operator [0.4 h]; Pump Operator [0.4 h]; Equipment Operator [0.4 h]; Labour [16.41 h]; Telecom Pipe [12.74] | 1,921.66 | 1,921.66 | RD5 |
| RSZone 3Road 05Telecom NetworkA86810 |  | Zone 3 - Road 5 - Telecom Network - Telecom Pipe - Excavation | 2.91d | 2026-11-09 | 2026-11-11 | RSZone 3Road 05Telecom NetworkA86810-old |  | 95.53d | 0d | Contract Price Original Scope [8639.45 SAR]; Excavator Operator [29.05 h]; Dump Truck Operator [29.05 h]; Labour [73.76 h]; Telecom Pipe [400.89] | 8,639.45 |  | RD5 |
| RSZone 3Road 05Telecom NetworkA86820 |  | Zone 3 - Road 5 - Telecom Network - Telecom Pipe - Concrete Pouring | 1.26d | 2026-11-11 | 2026-11-14 | RSZone 3Road 05Telecom NetworkA86820-old, RSZone 3Road 05Telecom NetworkA86810 |  | 98.23d | 0d | Contract Price Original Scope [60532.2 SAR]; Crane Operator [12.6 h]; Pump Operator [12.6 h]; Equipment Operator [12.6 h]; Labour [516.79 h]; Telecom Pipe [401.26] | 60,532.17 |  | RD5 |
| RSZone 3Road 05Telecom NetworkA86830 |  | Zone 3 - Road 5 - Telecom Network - Telecom Pipe - Test | 2d | 2026-11-14 | 2026-11-16 | RSZone 3Road 05Telecom NetworkA86820 |  | 98.23d | 0d | Contract Price Original Scope [8921.98 SAR]; Pump Operator [20 h]; Equipment Operator [20 h]; Labour [76.17 h]; Telecom Pipe [414] | 8,921.98 |  | RD5 |
| RSZone 3Road 05Telecom NetworkA86840 |  | Zone 3 - Road 5 - Telecom Network - Telecom Pipe - Backfilling | 2d | 2026-11-16 | 2026-11-18 | RSZone 3Road 05Telecom NetworkA86830, RSZone 3Road 05Telecom NetworkA86810 |  | 98.23d | 97.84d | Contract Price Original Scope [8921.98 SAR]; Excavator Operator [20 h]; Compactor Operator [20 h]; Dump Truck Operator [20 h]; Water Truck Operator [20 h]; Labour [76.17 h]; Telecom Pipe [414] | 8,921.98 |  | RD5 |
|  | 2 | **TELECOM MANHOLE** |  | 2026-09-27 | 2026-12-06 |  |  |  |  |  |  |  |  |
| RSZone 3Road 05Telecom NetworkA86890-old |  | Zone 3 - Road 5 - Telecom Network - TELECOM MANHOLE - Manhole Installation (old) | 31d | 2026-09-27 A | 2026-11-01 A | RSZone 3Road 04Telecom NetworkA86710-old | 100% |  |  | Contract Price Original Scope [57030.7 SAR]; Crane Operator [11.4 h]; Boom Truck Operator [11.4 h]; Equipment Operator [11.4 h]; Labour [486.9 h]; Telecom Manhole [3.8] | 57,030.67 | 57,030.67 | RD5 |
| RSZone 3Road 05Telecom NetworkA86890 |  | Zone 3 - Road 5 - Telecom Network - TELECOM MANHOLE - Manhole Installation | 1d | 2026-12-06 | 2026-12-06 | RSZone 3Road 05Telecom NetworkA86890-old, RSZone 3Road 04Telecom NetworkA86710 |  | 76.4d | 0d | Contract Price Original Scope [3001.61 SAR]; Crane Operator [0.6 h]; Boom Truck Operator [0.6 h]; Equipment Operator [0.6 h]; Labour [25.63 h]; Telecom Manhole [0.2] | 3,001.61 |  | RD5 |

| ID | WBS | Activity | Duration | Start | Finish | Predecessors | Complete | Planned start | Planned finish | Total float | Free float | Resources | Cost | Actual cost | MODON |
| --- | --- | --- | --- | --- | --- | --- | --- | --- | --- | --- | --- | --- | --- | --- | --- |
|  | 14 | **Road 6** |  | 2026-04-05 | 2027-03-16 |  |  |  |  |  |  |  |  |  |  |
|  | 4 | **Storm Network** |  | 2027-03-10 | 2027-03-16 |  |  |  |  |  |  |  |  |  |  |
|  | 8 | **Manhole** |  | 2027-03-10 | 2027-03-16 |  |  |  |  |  |  |  |  |  |  |
| RSZone 3Road 06Storm NetworkA94060 |  | Zone 3 - Road 6 - Storm Network - Manhole - COVER INSTALLATION | 3d | 2027-03-10 | 2027-03-16 | RSZone 3Road 05Storm NetworkA93980 |  |  |  | 22.4d | 0d | Contract Price Original Scope [2777.85 SAR]; Crane Operator [7 h]; Boom Truck Operator [7 h]; Equipment Operator [7 h]; Labour [23.72 h]; Manholes GRP (new + DI cover only) [1] | 2,777.85 |  | RD6 |
|  | 3 | **Sewage Network** |  | 2026-06-17 | 2026-07-01 |  |  |  |  |  |  |  |  |  |  |
|  | 1 | **UPVC Pipes 200 MM** |  | 2026-06-17 | 2026-07-01 |  |  |  |  |  |  |  |  |  |  |
| RSZone 3Road 06Sewage NetworkA87040 |  | Zone 3 - Road 6 - Sewage Network - UPVC Pipes 200 MM - Excavation | 5d | 2026-06-17 A | 2026-06-22 A | RSZone 3Road 05Sewage NetworkA86930 | 100% |  |  |  |  | Contract Price Original Scope [1226.96 SAR]; Excavator Operator [30 h]; Dump Truck Operator [30 h]; Labour [10.48 h]; UPVC Pipes 200 MM [16] | 1,226.96 | 1,226.96 | RD6 |
| RSZone 3Road 06Sewage NetworkA87050 |  | Zone 3 - Road 6 - Sewage Network - UPVC Pipes 200 MM - Installation | 2d | 2026-06-23 A | 2026-06-24 A | RSZone 3Road 06Sewage NetworkA87040 | 100% |  |  |  |  | Contract Price Original Scope [5316.83 SAR]; Excavator Operator [5 h]; Crane Operator [5 h]; Equipment Operator [5 h]; Labour [45.39 h]; UPVC Pipes 200 MM [16] | 5,316.83 | 5,316.83 | RD6 |
| RSZone 3Road 06Sewage NetworkA87060 |  | Zone 3 - Road 6 - Sewage Network - UPVC Pipes 200 MM - Test | 0.9d | 2026-06-25 A | 2026-06-26 A | RSZone 3Road 06Sewage NetworkA87050 | 100% | 2026-06-25 | 2026-06-25 |  |  | Contract Price Original Scope [817.97 SAR]; Pump Operator [20 h]; Equipment Operator [20 h]; Labour [6.98 h]; UPVC Pipes 200 MM [16] | 817.97 | 817.97 | RD6 |
| RSZone 3Road 06Sewage NetworkA87070 |  | Zone 3 - Road 6 - Sewage Network - UPVC Pipes 200 MM - Backfilling | 4d | 2026-06-28 A | 2026-07-01 A | RSZone 3Road 06Sewage NetworkA87060 | 100% |  |  |  |  | Contract Price Original Scope [817.97 SAR]; Excavator Operator [20 h]; Compactor Operator [20 h]; Dump Truck Operator [20 h]; Water Truck Operator [20 h]; Labour [6.98 h]; UPVC Pipes 200 MM [16] | 817.97 | 817.97 | RD6 |
|  | 6 | **Potable Water Network** |  | 2026-04-26 | 2027-02-15 |  |  |  |  |  |  |  |  |  |  |
|  | 2 | **Fittings** |  | 2026-11-17 | 2026-11-19 |  |  |  |  |  |  |  |  |  |  |
|  | 3 | **Tees** |  | 2026-11-17 | 2026-11-19 |  |  |  |  |  |  |  |  |  |  |
| RSZone 3Road 06Potable NetworkA82600 |  | Zone 3 - Road 6 - Potable Water Network - Tees - Installation | 3d | 2026-11-17 | 2026-11-19 | RSZone 3Road 05Potable NetworkA82780 |  |  |  | 91.4d | 91.2d | Contract Price Original Scope [5999.2 SAR]; Labour [51.22 h]; Fittings - Tees (all sizes) [2] | 5,999.2 |  | RD6 |
|  | 1 | **Valves** |  | 2026-04-26 | 2027-02-15 |  |  |  |  |  |  |  |  |  |  |
|  | 4 | **Buried Valves** |  | 2026-04-26 | 2026-11-16 |  |  |  |  |  |  |  |  |  |  |
| RSZone 3Road 06Potable NetworkA82790 |  | Zone 3 - Road 6 - Potable Water Network - Buried Valves - Excavation | 4d | 2026-04-26 A | 2026-04-29 A | RSZone 3Road 05Potable NetworkA94010 | 100% |  |  |  |  | Contract Price Original Scope [1601.9 SAR]; Excavator Operator [30 h]; Dump Truck Operator [30 h]; Labour [13.68 h]; Buried Valves [10] | 1,601.9 | 1,601.9 | RD6 |
| RSZone 3Road 06Potable NetworkA82800 |  | Zone 3 - Road 6 - Potable Water Network - Buried Valves - Installation | 3d | 2026-04-30 A | 2026-05-03 A | RSZone 3Road 06Potable NetworkA82790, RSZone 3Road 06Potable NetworkA82790 FF | 100% | 2026-04-30 | 2026-05-04 |  |  | Contract Price Original Scope [20824.7 SAR]; Labour [177.79 h]; Buried Valves [10] | 20,824.67 | 20,824.67 | RD6 |
| RSZone 3Road 06Potable NetworkA82810 |  | Zone 3 - Road 6 - Potable Water Network - Buried Valves - Surface Box | 3d | 2026-11-09 | 2026-11-11 | RSZone 3Road 06Potable NetworkA82800 |  |  |  | 94.4d | 0d | Labour; Buried Valves [10] |  |  | RD6 |
| RSZone 3Road 06Potable NetworkA82820 |  | Zone 3 - Road 6 - Potable Water Network - Buried Valves - Test | 2d | 2026-11-12 | 2026-11-14 | RSZone 3Road 06Potable NetworkA82810 |  |  |  | 94.4d | 0d | Contract Price Original Scope [6407.59 SAR]; Pump Operator [20 h]; Equipment Operator [20 h]; Labour [54.7 h]; Buried Valves [10] | 6,407.59 |  | RD6 |
| RSZone 3Road 06Potable NetworkA82830 |  | Zone 3 - Road 6 - Potable Water Network - Buried Valves - Backfilling | 2d | 2026-11-15 | 2026-11-16 | RSZone 3Road 06Potable NetworkA82820 |  |  |  | 94.4d | 94.2d | Contract Price Original Scope [3203.8 SAR]; Excavator Operator [20 h]; Compactor Operator [20 h]; Dump Truck Operator [20 h]; Water Truck Operator [20 h]; Labour [27.35 h]; Buried Valves [10] | 3,203.8 |  | RD6 |
|  | 5 | **Butterfly Valves 355 MM** |  | 2027-02-06 | 2027-02-15 |  |  |  |  |  |  |  |  |  |  |
| RSZone 3Road 06Potable NetworkA83100 |  | Zone 3 - Road 6 - Potable Water Network - Butterfly Valves 355 MM - Installation | 3d | 2027-02-06 | 2027-02-09 | RSZone 3Road 04Potable NetworkA93720 SS |  |  |  | 0.2d | 0d | Contract Price Original Scope [44963.1 SAR]; Labour [383.87 h]; Butterfly Valves [8] | 44,963.1 |  | RD6 |
| RSZone 3Road 06Potable NetworkA83110 |  | Zone 3 - Road 6 - Potable Water Network - Butterfly Valves 355 MM - Surface Box | 3d | 2027-02-09 | 2027-02-13 | RSZone 3Road 06Potable NetworkA83100 |  |  |  | 17.2d | 0d | Labour; Butterfly Valves [8] |  |  | RD6 |
| RSZone 3Road 06Potable NetworkA83120 |  | Zone 3 - Road 6 - Potable Water Network - Butterfly Valves 355 MM - Test | 2d | 2027-02-13 | 2027-02-15 | RSZone 3Road 06Potable NetworkA83110 |  |  |  | 17.2d | 17d | Contract Price Original Scope [19269.9 SAR]; Pump Operator [20 h]; Equipment Operator [20 h]; Labour [164.52 h]; Butterfly Valves [8] | 19,269.9 |  | RD6 |

| ID | WBS | Activity | Duration | Start | Finish | Predecessors | Complete | Planned start | Planned finish | Total float | Free float | Resources | Cost | Actual cost | MODON |
| --- | --- | --- | --- | --- | --- | --- | --- | --- | --- | --- | --- | --- | --- | --- | --- |
|  | 1 | **Butterfly Valves 560 MM** |  | 2027-02-06 | 2027-02-15 |  |  |  |  |  |  |  |  |  |  |
| RSZone 3Road 06Potable NetworkA94090 |  | Zone 3 - Road 6 - Potable Water Network - Butterfly Valves 560 MM - Installation | 3d | 2027-02-06 | 2027-02-09 | RSZone 3Road 06Potable NetworkA83100 SS |  |  |  | 0.2d | 0d | Contract Price Original Scope [28101.9 SAR]; Labour [239.92 h]; Butterfly Valves [5] | 28,101.94 |  | RD6 |
| RSZone 3Road 06Potable NetworkA94100 |  | Zone 3 - Road 6 - Potable Water Network - Butterfly Valves 560 MM - Surface Box | 3d | 2027-02-09 | 2027-02-13 | RSZone 3Road 06Potable NetworkA94090 |  |  |  | 17.2d | 0d | Labour; Butterfly Valves [5] |  |  | RD6 |
| RSZone 3Road 06Potable NetworkA94110 |  | Zone 3 - Road 6 - Potable Water Network - Butterfly Valves 560 MM - Test | 2d | 2027-02-13 | 2027-02-15 | RSZone 3Road 06Potable NetworkA94100 |  |  |  | 17.2d | 17d | Contract Price Original Scope [12043.7 SAR]; Pump Operator [20 h]; Equipment Operator [20 h]; Labour [102.82 h]; Butterfly Valves [5] | 12,043.69 |  | RD6 |
|  | 2 | **Butterfly Valves 710 MM** |  | 2027-02-06 | 2027-02-15 |  |  |  |  |  |  |  |  |  |  |
| RSZone 3Road 06Potable NetworkA94120 |  | Zone 3 - Road 6 - Potable Water Network - Butterfly Valves 710 MM - Installation | 3d | 2027-02-06 | 2027-02-09 | RSZone 3Road 06Potable NetworkA94090 SS |  |  |  | 0.2d | 0d | Contract Price Original Scope [16861.2 SAR]; Labour [143.95 h]; Butterfly Valves [3] | 16,861.16 |  | RD6 |
| RSZone 3Road 06Potable NetworkA94130 |  | Zone 3 - Road 6 - Potable Water Network - Butterfly Valves 710 MM - Surface Box | 3d | 2027-02-09 | 2027-02-13 | RSZone 3Road 06Potable NetworkA94120 |  |  |  | 17.2d | 0d | Labour; Butterfly Valves [3] |  |  | RD6 |
| RSZone 3Road 06Potable NetworkA94140 |  | Zone 3 - Road 6 - Potable Water Network - Butterfly Valves 710 MM - Test | 2d | 2027-02-13 | 2027-02-15 | RSZone 3Road 06Potable NetworkA94130 |  |  |  | 17.2d | 17d | Contract Price Original Scope [7226.21 SAR]; Pump Operator [20 h]; Equipment Operator [20 h]; Labour [61.69 h]; Butterfly Valves [3] | 7,226.21 |  | RD6 |
|  | 7 | **FIRE HYDRANT** |  | 2026-05-10 | 2026-11-16 |  |  |  |  |  |  |  |  |  |  |
| RSZone 3Road 06Potable NetworkA84010 |  | Zone 3 - Road 6 - Potable Water Network - FIRE HYDRANT - Excavation | 4.9d | 2026-05-10 A | 2026-05-14 A | RSZone 3Road 06Potable NetworkA82800 | 100% |  |  |  |  | Contract Price Original Scope [4161.85 SAR]; Excavator Operator [30 h]; Dump Truck Operator [30 h]; Labour [35.53 h]; Fire Hydrant [3] | 4,161.85 | 4,161.85 | RD6 |
| RSZone 3Road 06Potable NetworkA84020 |  | Zone 3 - Road 6 - Potable Water Network - FIRE HYDRANT - Buried Gate Valve Installation | 4d | 2026-05-17 A | 2026-05-20 A | RSZone 3Road 06Potable NetworkA84010 | 100% |  |  |  |  | Labour; Fire Hydrant [3] |  |  | RD6 |
| RSZone 3Road 06Potable NetworkA84030 |  | Zone 3 - Road 6 - Potable Water Network - FIRE HYDRANT - Fire Hydrant Installation | 4d | 2026-05-21 A | 2026-05-25 A | RSZone 3Road 06Potable NetworkA84020 | 100% | 2026-05-21 | 2026-05-26 |  |  | Contract Price Original Scope [30381.5 SAR]; Labour [259.38 h]; Fire Hydrant [3] | 30,381.48 | 30,381.48 | RD6 |
| RSZone 3Road 06Potable NetworkA84040 |  | Zone 3 - Road 6 - Potable Water Network - FIRE HYDRANT - Surface Box | 3d | 2026-11-09 | 2026-11-11 | RSZone 3Road 06Potable NetworkA84030 |  |  |  | 94.4d | 0d | Labour; Fire Hydrant [3] |  |  | RD6 |
| RSZone 3Road 06Potable NetworkA84050 |  | Zone 3 - Road 6 - Potable Water Network - FIRE HYDRANT - Test | 2d | 2026-11-12 | 2026-11-14 | RSZone 3Road 06Potable NetworkA84040 |  |  |  | 94.4d | 0d | Contract Price Original Scope [2913.29 SAR]; Pump Operator [20 h]; Equipment Operator [20 h]; Labour [24.87 h]; Fire Hydrant [3] | 2,913.29 |  | RD6 |
| RSZone 3Road 06Potable NetworkA84060 |  | Zone 3 - Road 6 - Potable Water Network - FIRE HYDRANT - Backfilling | 2d | 2026-11-15 | 2026-11-16 | RSZone 3Road 06Potable NetworkA84050 |  |  |  | 94.4d | 94.2d | Contract Price Original Scope [4161.85 SAR]; Excavator Operator [20 h]; Compactor Operator [20 h]; Dump Truck Operator [20 h]; Water Truck Operator [20 h]; Labour [35.53 h]; Fire Hydrant [3] | 4,161.85 |  | RD6 |
|  | 9 | **Thrust Block** |  | 2026-10-18 | 2026-11-09 |  |  |  |  |  |  |  |  |  |  |
| RSZone 3Road 06Potable NetworkA94150-old |  | Zone 3 - Road 6 - Potable Water Network - Thrust Block - Thrust Block (old) | 13d | 2026-10-18 A | 2026-11-01 A | RSZone 3Road 06Potable NetworkA84030 | 100% |  |  |  |  | Contract Price Original Scope [20240 SAR]; Crane Operator [8.67 h]; Pump Operator [8.67 h]; Equipment Operator [8.67 h]; Labour [172.8 h]; Thrust Blocks [6] | 20,240.04 | 20,240.04 | RD6 |
| RSZone 3Road 06Potable NetworkA94150 |  | Zone 3 - Road 6 - Potable Water Network - Thrust Block - Thrust Block | 1d | 2026-11-09 | 2026-11-09 | RSZone 3Road 06Potable NetworkA94150-old |  |  |  | 100.4d | 100.2d | Contract Price Original Scope [10120 SAR]; Crane Operator [4.33 h]; Pump Operator [4.33 h]; Equipment Operator [4.33 h]; Labour [86.4 h]; Thrust Blocks [3] | 10,120.02 |  | RD6 |
|  | 2 | **Lateral Irrigation Network** |  | 2026-04-05 | 2026-11-16 |  |  |  |  |  |  |  |  |  |  |
|  | 1 | **Buried Valves** |  | 2026-04-05 | 2026-11-16 |  |  |  |  |  |  |  |  |  |  |
| RSZone 3Road 06Irrigation NetworkA79940 |  | Zone 3 - Road 6 - Lateral Irrigation Network - Buried Valves - Excavation | 3d | 2026-04-05 A | 2026-04-07 A | RSZone 3Road 05Irrigation NetworkA79900 | 100% |  |  |  |  | Contract Price Original Scope [605.31 SAR]; Excavator Operator [30 h]; Dump Truck Operator [30 h]; Labour [5.17 h]; Buried Valves [9] | 605.31 | 605.31 | RD6 |
| RSZone 3Road 06Irrigation NetworkA79950 |  | Zone 3 - Road 6 - Lateral Irrigation Network - Buried Valves - Installation | 4d | 2026-04-08 A | 2026-04-12 A | RSZone 3Road 06Irrigation NetworkA79940 | 100% |  |  |  |  | Contract Price Original Scope [7869.03 SAR]; Labour [67.18 h]; Buried Valves [9] | 7,869.03 | 7,869.03 | RD6 |
| RSZone 3Road 06Irrigation NetworkA79960 |  | Zone 3 - Road 6 - Lateral Irrigation Network - Buried Valves - Surface Box | 3d | 2026-11-09 | 2026-11-11 | RSZone 3Road 06Irrigation NetworkA79950 |  |  |  | 94.4d | 0d | Labour; Buried Valves [9] |  |  | RD6 |
| RSZone 3Road 06Irrigation NetworkA79970 |  | Zone 3 - Road 6 - Lateral Irrigation Network - Buried Valves - Test | 2d | 2026-11-12 | 2026-11-14 | RSZone 3Road 06Irrigation NetworkA79960 |  |  |  | 94.4d | 0d | Contract Price Original Scope [2421.24 SAR]; Pump Operator [20 h]; Equipment Operator [20 h]; Labour [20.67 h]; Buried Valves [9] | 2,421.24 |  | RD6 |
| RSZone 3Road 06Irrigation NetworkA79980 |  | Zone 3 - Road 6 - Lateral Irrigation Network - Buried Valves - Backfilling | 2d | 2026-11-15 | 2026-11-16 | RSZone 3Road 06Irrigation NetworkA79970 |  |  |  | 94.4d | 93.76d | Contract Price Original Scope [1210.62 SAR]; Excavator Operator [20 h]; Compactor Operator [20 h]; Dump Truck Operator [20 h]; Water Truck Operator [20 h]; Labour [10.34 h]; Buried Valves [9] | 1,210.62 |  | RD6 |

| ID | WBS | Activity | Duration | Start | Finish | Predecessors | Complete | Planned start | Planned finish | Total float | Free float | Resources | Cost | Actual cost | MODON |
| --- | --- | --- | --- | --- | --- | --- | --- | --- | --- | --- | --- | --- | --- | --- | --- |
|  | 1 | **Telecom** |  | 2026-06-15 | 2026-12-07 |  |  |  |  |  |  |  |  |  |  |
|  | 1 | **Telecom Pipe** |  | 2026-09-23 | 2026-11-21 |  |  |  |  |  |  |  |  |  |  |
| RSZone 3Road 06Telecom NetworkA86950-old |  | Zone 3 - Road 6 - Telecom Network - Telecom Pipe - Excavation (old) | 33d | 2026-09-23 A | 2026-11-01 A | RSZone 3Road 05Telecom NetworkA86810-old | 100% | 2026-09-24 | 2026-11-02 |  |  | Contract Price Original Scope [452.23 SAR]; Excavator Operator [2.37 h]; Dump Truck Operator [2.37 h]; Labour [3.86 h]; Telecom Pipe [20.98] | 452.23 | 452.23 | RD6 |
| RSZone 3Road 06Telecom NetworkA86960-old |  | Zone 3 - Road 6 - Telecom Network - Telecom Pipe - Concrete Pouring (old) | 33d | 2026-09-24 A | 2026-11-01 A | RSZone 3Road 06Telecom NetworkA86950-old | 100% | 2026-09-24 | 2026-11-02 |  |  | Contract Price Original Scope [3189.61 SAR]; Crane Operator [1.03 h]; Pump Operator [1.03 h]; Equipment Operator [1.03 h]; Labour [27.23 h]; Telecom Pipe [21.14] | 3,189.61 | 3,189.61 | RD6 |
| RSZone 3Road 06Telecom NetworkA86950 |  | Zone 3 - Road 6 - Telecom Network - Telecom Pipe - Excavation | 2.76d | 2026-11-11 | 2026-11-15 | RSZone 3Road 06Telecom NetworkA86950-old, RSZone 3Road 05Telecom NetworkA86810 |  |  |  | 95.53d | 0d | Contract Price Original Scope [5280.25 SAR]; Excavator Operator [27.63 h]; Dump Truck Operator [27.63 h]; Labour [45.08 h]; Telecom Pipe [245.02] | 5,280.25 |  | RD6 |
| RSZone 3Road 06Telecom NetworkA86960 |  | Zone 3 - Road 6 - Telecom Network - Telecom Pipe - Concrete Pouring | 1.2d | 2026-11-15 | 2026-11-16 | RSZone 3Road 06Telecom NetworkA86960-old, RSZone 3Road 06Telecom NetworkA86950 |  |  |  | 95.53d | 0d | Contract Price Original Scope [36937.7 SAR]; Crane Operator [11.97 h]; Pump Operator [11.97 h]; Equipment Operator [11.97 h]; Labour [315.36 h]; Telecom Pipe [244.86] | 36,937.73 |  | RD6 |
| RSZone 3Road 06Telecom NetworkA86970 |  | Zone 3 - Road 6 - Telecom Network - Telecom Pipe - Test | 2d | 2026-11-16 | 2026-11-18 | RSZone 3Road 06Telecom NetworkA86960 |  |  |  | 95.53d | 0d | Contract Price Original Scope [5732.48 SAR]; Pump Operator [20 h]; Equipment Operator [20 h]; Labour [48.94 h]; Telecom Pipe [266] | 5,732.48 |  | RD6 |
| RSZone 3Road 06Telecom NetworkA86980 |  | Zone 3 - Road 6 - Telecom Network - Telecom Pipe - Backfilling | 2d | 2026-11-18 | 2026-11-21 | RSZone 3Road 06Telecom NetworkA86970, RSZone 3Road 06Telecom NetworkA86950 |  |  |  | 95.53d | 95.14d | Contract Price Original Scope [5732.48 SAR]; Excavator Operator [20 h]; Compactor Operator [20 h]; Dump Truck Operator [20 h]; Water Truck Operator [20 h]; Labour [48.94 h]; Telecom Pipe [266] | 5,732.48 |  | RD6 |
|  | 12 | **Telecom Duct** |  | 2026-06-15 | 2026-11-12 |  |  |  |  |  |  |  |  |  |  |
| RSZone 3Road 06Telecom NetworkA86990 |  | Zone 3 - Road 6 - Telecom Network - Telecom Duct - Excavation | 3d | 2026-06-15 A | 2026-06-17 A | RSZone 3Road 04Telecom NetworkA86680 | 100% |  |  |  |  | Contract Price Original Scope [653.06 SAR]; Excavator Operator [30 h]; Dump Truck Operator [30 h]; Labour [5.58 h]; Telecom Duct (Road Crossing) [30] | 653.06 | 653.06 | RD6 |
| RSZone 3Road 06Telecom NetworkA87000 |  | Zone 3 - Road 6 - Telecom Network - Telecom Duct - Concrete Pouring | 3d | 2026-06-18 A | 2026-06-21 A | RSZone 3Road 06Telecom NetworkA86990 | 100% | 2026-06-18 | 2026-06-22 |  |  | Contract Price Original Scope [9142.86 SAR]; Crane Operator [12 h]; Pump Operator [12 h]; Equipment Operator [12 h]; Labour [78.06 h]; Telecom Duct (Road Crossing) [30] | 9,142.86 | 9,142.86 | RD6 |
| RSZone 3Road 06Telecom NetworkA87010 |  | Zone 3 - Road 6 - Telecom Network - Telecom Duct - Test | 2d | 2026-11-09 | 2026-11-10 | RSZone 3Road 06Telecom NetworkA87000 |  |  |  | 102.4d | 0d | Contract Price Original Scope [1306.12 SAR]; Pump Operator [20 h]; Equipment Operator [20 h]; Labour [11.15 h]; Telecom Duct (Road Crossing) [30] | 1,306.12 |  | RD6 |
| RSZone 3Road 06Telecom NetworkA87020 |  | Zone 3 - Road 6 - Telecom Network - Telecom Duct - Backfilling | 2d | 2026-11-11 | 2026-11-12 | RSZone 3Road 06Telecom NetworkA87010 |  |  |  | 102.4d | 102d | Contract Price Original Scope [1959.19 SAR]; Excavator Operator [20 h]; Compactor Operator [20 h]; Dump Truck Operator [20 h]; Water Truck Operator [20 h]; Labour [16.73 h]; Telecom Duct (Road Crossing) [30] | 1,959.19 |  | RD6 |
|  | 2 | **TELECOM MANHOLE** |  | 2026-09-27 | 2026-12-07 |  |  |  |  |  |  |  |  |  |  |
| RSZone 3Road 06Telecom NetworkA87030-old |  | Zone 3 - Road 6 - Telecom Network - TELECOM MANHOLE - Manhole Installation (old) | 31d | 2026-09-27 A | 2026-11-01 A | RSZone 3Road 05Telecom NetworkA86890-old | 100% |  |  |  |  | Contract Price Original Scope [114061 SAR]; Crane Operator [11.4 h]; Boom Truck Operator [11.4 h]; Equipment Operator [11.4 h]; Labour [973.8 h]; Telecom Manhole [7.6] | 114,061.33 | 114,061.33 | RD6 |
| RSZone 3Road 06Telecom NetworkA87030 |  | Zone 3 - Road 6 - Telecom Network - TELECOM MANHOLE - Manhole Installation | 1d | 2026-12-07 | 2026-12-07 | RSZone 3Road 06Telecom NetworkA87030-old, RSZone 3Road 05Telecom NetworkA86890 |  |  |  | 76.4d | 0d | Contract Price Original Scope [6003.23 SAR]; Crane Operator [0.6 h]; Boom Truck Operator [0.6 h]; Equipment Operator [0.6 h]; Labour [51.25 h]; Telecom Manhole [0.4] | 6,003.23 |  | RD6 |
|  | 15 | **Road 7** |  | 2026-04-05 | 2027-03-24 |  |  |  |  |  |  |  |  |  |  |
|  | 4 | **Storm Network** |  | 2026-06-21 | 2027-03-24 |  |  |  |  |  |  |  |  |  |  |
|  | 1 | **Perforated 160 mm** |  | 2026-06-21 | 2026-11-10 |  |  |  |  |  |  |  |  |  |  |
| RSZone 3Road 07Storm NetworkA87170 |  | Zone 3 - Road 7 - Storm Network - Perforated 160 mm - Excavation | 4.9d | 2026-06-21 A | 2026-06-25 A | RSZone 3Road 04Storm NetworkA82230 | 100% |  |  |  |  | Contract Price Original Scope [1678.23 SAR]; Excavator Operator [30 h]; Dump Truck Operator [30 h]; Labour [14.33 h]; Perforated 160 mm [105] | 1,678.23 | 1,678.23 | RD7 |
| RSZone 3Road 07Storm NetworkA87180 |  | Zone 3 - Road 7 - Storm Network - Perforated 160 mm - Bedding | 2d | 2026-06-28 A | 2026-06-29 A | RSZone 3Road 07Storm NetworkA87170 | 100% |  |  |  |  | Contract Price Original Scope [839.12 SAR]; Compactor Operator [20 h]; Equipment Operator [20 h]; Water Truck Operator [20 h]; Labour [7.16 h]; Perforated 160 mm [105] | 839.12 | 839.12 | RD7 |
| RSZone 3Road 07Storm NetworkA87190 |  | Zone 3 - Road 7 - Storm Network - Perforated 160 mm - Pipe Installation | 6d | 2026-06-29 A | 2026-07-05 A | RSZone 3Road 07Storm NetworkA87180 | 100% |  |  |  |  | Contract Price Original Scope [10908.5 SAR]; Excavator Operator [40 h]; Crane Operator [40 h]; Equipment Operator [40 h]; Labour [93.13 h]; Perforated 160 mm [105] | 10,908.51 | 10,908.51 | RD7 |
| RSZone 3Road 07Storm NetworkA87210 |  | Zone 3 - Road 7 - Storm Network - Perforated 160 mm - Backfilling | 3d | 2026-07-06 A | 2026-07-08 A | RSZone 3Road 07Storm NetworkA87190 | 100% |  |  |  |  | Contract Price Original Scope [1678.23 SAR]; Excavator Operator [20 h]; Compactor Operator [20 h]; Dump Truck Operator [20 h]; Water Truck Operator [20 h]; Labour [14.33 h]; Perforated 160 mm [105] | 1,678.23 | 1,678.23 | RD7 |
| RSZone 3Road 07Storm NetworkA87200 |  | Zone 3 - Road 7 - Storm Network - Perforated 160 mm - Test | 2d | 2026-11-09 | 2026-11-10 | RSZone 3Road 07Storm NetworkA87210 |  |  |  | 123.4d | 109d | Contract Price Original Scope [1678.23 SAR]; Pump Operator [20 h]; Equipment Operator [20 h]; Labour [14.33 h]; Perforated 160 mm [105] | 1,678.23 |  | RD7 |

| ID | WBS | Activity | Duration | Start | Finish | Predecessors | Complete | Planned start | Planned finish | Total float | Free float | Resources | Cost | Actual cost | MODON |
| --- | --- | --- | --- | --- | --- | --- | --- | --- | --- | --- | --- | --- | --- | --- | --- |
|  | 2 | **Gravel and Geotextile** |  | 2026-06-21 | 2026-06-22 |  |  |  |  |  |  |  |  |  |  |
| RSZone 3Road 07Storm NetworkA87220 |  | Zone 3 - Road 7 - Storm Network - Gravel and Geotextile - Installation | 2d | 2026-06-21 A | 2026-06-22 A | RSZone 3Road 07Storm NetworkA87210 | 100% |  |  |  |  | Contract Price Original Scope [12316.3 SAR]; Excavator Operator [8 h]; Dump Truck Operator [8 h]; Equipment Operator [8 h]; Water Truck Operator [8 h]; Labour [105.15 h]; Gravel and Geotextile [105] | 12,316.32 | 12,316.32 | RD7 |
|  | 8 | **Manhole** |  | 2027-03-16 | 2027-03-24 |  |  |  |  |  |  |  |  |  |  |
| RSZone 3Road 07Storm NetworkA94200 |  | Zone 3 - Road 7 - Storm Network - Manhole - COVER INSTALLATION | 3d | 2027-03-16 | 2027-03-24 | RSZone 3Road 06Storm NetworkA94060 |  |  |  | 22.4d | 8d | Contract Price Original Scope [25000.7 SAR]; Crane Operator [7 h]; Boom Truck Operator [7 h]; Equipment Operator [7 h]; Labour [213.44 h]; Manholes GRP (new + DI cover only) [9] | 25,000.68 |  | RD7 |
|  | 2 | **Potable Water Network** |  | 2026-04-27 | 2026-11-19 |  |  |  |  |  |  |  |  |  |  |
|  | 1 | **Valves** |  | 2026-04-27 | 2026-11-16 |  |  |  |  |  |  |  |  |  |  |
|  | 2 | **Buried Valves** |  | 2026-04-27 | 2026-11-16 |  |  |  |  |  |  |  |  |  |  |
| RSZone 3Road 07Potable NetworkA82840 |  | Zone 3 - Road 7 - Potable Water Network - Buried Valves - Excavation | 3.9d | 2026-04-27 A | 2026-04-30 A | RSZone 3Road 06Potable NetworkA84030 | 100% |  |  |  |  | Contract Price Original Scope [1922.28 SAR]; Excavator Operator [30 h]; Dump Truck Operator [30 h]; Labour [16.41 h]; Buried Valves [12] | 1,922.28 | 1,922.28 | RD7 |
| RSZone 3Road 07Potable NetworkA82850 |  | Zone 3 - Road 7 - Potable Water Network - Buried Valves - Installation | 2d | 2026-05-03 A | 2026-05-04 A | RSZone 3Road 07Potable NetworkA82840 | 100% |  |  |  |  | Contract Price Original Scope [24989.6 SAR]; Labour [213.35 h]; Buried Valves [12] | 24,989.6 | 24,989.6 | RD7 |
| RSZone 3Road 07Potable NetworkA82860 |  | Zone 3 - Road 7 - Potable Water Network - Buried Valves - Surface Box | 3d | 2026-11-09 | 2026-11-11 | RSZone 3Road 07Potable NetworkA82850 |  |  |  | 94.4d | 0d | Labour; Buried Valves [12] |  |  | RD7 |
| RSZone 3Road 07Potable NetworkA82870 |  | Zone 3 - Road 7 - Potable Water Network - Buried Valves - Test | 2d | 2026-11-12 | 2026-11-14 | RSZone 3Road 07Potable NetworkA82860 |  |  |  | 94.4d | 0d | Contract Price Original Scope [7689.11 SAR]; Pump Operator [20 h]; Equipment Operator [20 h]; Labour [65.65 h]; Buried Valves [12] | 7,689.11 |  | RD7 |
| RSZone 3Road 07Potable NetworkA82880 |  | Zone 3 - Road 7 - Potable Water Network - Buried Valves - Backfilling | 2d | 2026-11-15 | 2026-11-16 | RSZone 3Road 07Potable NetworkA82870 |  |  |  | 94.4d | 94.2d | Contract Price Original Scope [3844.55 SAR]; Excavator Operator [20 h]; Compactor Operator [20 h]; Dump Truck Operator [20 h]; Water Truck Operator [20 h]; Labour [32.82 h]; Buried Valves [12] | 3,844.55 |  | RD7 |
|  | 7 | **FIRE HYDRANT** |  | 2026-09-03 | 2026-11-19 |  |  |  |  |  |  |  |  |  |  |
| RSZone 3Road 07Potable NetworkA84070-old |  | Zone 3 - Road 7 - Potable Water Network - FIRE HYDRANT - Excavation (old) | 50d | 2026-09-03 A | 2026-11-01 A | RSZone 3Road 07Potable NetworkA82840 | 100% | 2026-09-03 | 2026-11-02 |  |  | Contract Price Original Scope [8324.46 SAR]; Excavator Operator [25.72 h]; Dump Truck Operator [25.72 h]; Labour [71.07 h]; Fire Hydrant [6] | 8,324.46 | 8,324.46 | RD7 |
| RSZone 3Road 07Potable NetworkA84080-old |  | Zone 3 - Road 7 - Potable Water Network - FIRE HYDRANT - Buried Gate Valve Installation (old) | 47d | 2026-09-07 A | 2026-11-01 A | RSZone 3Road 07Potable NetworkA84070-old | 100% |  |  |  |  | Labour; Fire Hydrant [6] |  |  | RD7 |
| RSZone 3Road 07Potable NetworkA84090-old |  | Zone 3 - Road 7 - Potable Water Network - FIRE HYDRANT - Fire Hydrant Installation (old) | 45d | 2026-09-09 A | 2026-11-01 A | RSZone 3Road 07Potable NetworkA84080-old | 100% |  |  |  |  | Contract Price Original Scope [60768.6 SAR]; Labour [518.81 h]; Fire Hydrant [6] | 60,768.58 | 60,768.58 | RD7 |
| RSZone 3Road 07Potable NetworkA84070 |  | Zone 3 - Road 7 - Potable Water Network - FIRE HYDRANT - Excavation | 1d | 2026-11-09 | 2026-11-09 | RSZone 3Road 07Potable NetworkA84070-old |  |  |  | 90.3d | 0d | Contract Price Original Scope [1386.51 SAR]; Excavator Operator [4.28 h]; Dump Truck Operator [4.28 h]; Labour [11.84 h]; Fire Hydrant [1] | 1,386.51 |  | RD7 |
| RSZone 3Road 07Potable NetworkA84080 |  | Zone 3 - Road 7 - Potable Water Network - FIRE HYDRANT - Buried Gate Valve Installation | 1d | 2026-11-10 | 2026-11-10 | RSZone 3Road 07Potable NetworkA84080-old, RSZone 3Road 07Potable NetworkA84070 |  |  |  | 91.4d | 0d | Labour; Fire Hydrant [1] |  |  | RD7 |
| RSZone 3Road 07Potable NetworkA84090 |  | Zone 3 - Road 7 - Potable Water Network - FIRE HYDRANT - Fire Hydrant Installation | 1d | 2026-11-11 | 2026-11-11 | RSZone 3Road 07Potable NetworkA84090-old, RSZone 3Road 07Potable NetworkA84080 |  |  |  | 91.4d | 0d | Contract Price Original Scope [10121.5 SAR]; Labour [86.41 h]; Fire Hydrant [1] | 10,121.53 |  | RD7 |
| RSZone 3Road 07Potable NetworkA84100 |  | Zone 3 - Road 7 - Potable Water Network - FIRE HYDRANT - Surface Box | 3d | 2026-11-12 | 2026-11-15 | RSZone 3Road 07Potable NetworkA84090, RSZone 3Road 07Potable NetworkA84070, RSZone 3Road 07Potable NetworkA84080 |  |  |  | 91.4d | 0d | Labour; Fire Hydrant [7] |  |  | RD7 |
| RSZone 3Road 07Potable NetworkA84110 |  | Zone 3 - Road 7 - Potable Water Network - FIRE HYDRANT - Test | 2d | 2026-11-16 | 2026-11-17 | RSZone 3Road 07Potable NetworkA84100 |  |  |  | 91.4d | 0d | Contract Price Original Scope [6797.68 SAR]; Pump Operator [20 h]; Equipment Operator [20 h]; Labour [58.04 h]; Fire Hydrant [7] | 6,797.68 |  | RD7 |
| RSZone 3Road 07Potable NetworkA84120 |  | Zone 3 - Road 7 - Potable Water Network - FIRE HYDRANT - Backfilling | 2d | 2026-11-18 | 2026-11-19 | RSZone 3Road 07Potable NetworkA84110 |  |  |  | 91.4d | 91.2d | Contract Price Original Scope [9710.97 SAR]; Excavator Operator [20 h]; Compactor Operator [20 h]; Dump Truck Operator [20 h]; Water Truck Operator [20 h]; Labour [82.91 h]; Fire Hydrant [7] | 9,710.97 |  | RD7 |
|  | 3 | **Lateral Irrigation Network** |  | 2026-04-05 | 2026-12-13 |  |  |  |  |  |  |  |  |  |  |
|  | 2 | **Tees** |  | 2026-11-17 | 2026-11-21 |  |  |  |  |  |  |  |  |  |  |
|  | 1 | **Tees for Pipe 125 MM** |  | 2026-11-17 | 2026-11-21 |  |  |  |  |  |  |  |  |  |  |
| RSZone 3Road 07Irrigation NetworkA87230 |  | Zone 3 - Road 7 - Lateral Irrigation Network - Tees for Pipe 125 MM - Installation | 3d | 2026-11-17 | 2026-11-21 | RSZone 3Road 05Irrigation NetworkA80790 |  |  |  | 86.5d | 0d | Contract Price Original Scope [4608.18 SAR]; Labour [39.34 h]; Fittings - Tees (all sizes) [3] | 4,608.18 |  | RD7 |

| ID | WBS | Activity | Duration | Start | Finish | Predecessors | Complete | Planned start | Planned finish | Total float | Free float | Resources | Cost | Actual cost | MODON |
| --- | --- | --- | --- | --- | --- | --- | --- | --- | --- | --- | --- | --- | --- | --- | --- |
|  | 1 | **Buried Valves** |  | 2026-04-05 | 2026-12-13 |  |  |  |  |  |  |  |  |  |  |
| RSZone 3Road 07Irrigation NetworkA79990 |  | Zone 3 - Road 7 - Lateral Irrigation Network - Buried Valves - Excavation | 4.9d | 2026-04-05 A | 2026-04-09 A | RSZone 3Road 06Irrigation NetworkA79950 | 100% |  |  |  |  | Contract Price Original Scope [403.54 SAR]; Excavator Operator [30 h]; Dump Truck Operator [30 h]; Labour [3.45 h]; Buried Valves [6] | 403.54 | 403.54 | RD7 |
| RSZone 3Road 07Irrigation NetworkA80000 |  | Zone 3 - Road 7 - Lateral Irrigation Network - Buried Valves - Installation | 2d | 2026-04-12 A | 2026-04-13 A | RSZone 3Road 07Irrigation NetworkA79990 | 100% |  |  |  |  | Contract Price Original Scope [5246.02 SAR]; Labour [44.79 h]; Buried Valves [6] | 5,246.02 | 5,246.02 | RD7 |
| RSZone 3Road 07Irrigation NetworkA80010 |  | Zone 3 - Road 7 - Lateral Irrigation Network - Buried Valves - Surface Box | 10d | 2026-11-09 | 2026-11-19 | RSZone 3Road 07Irrigation NetworkA80000 |  |  |  | 71.4d | 0d | Labour; Buried Valves [6] |  |  | RD7 |
| RSZone 3Road 07Irrigation NetworkA80020 |  | Zone 3 - Road 7 - Lateral Irrigation Network - Buried Valves - Test | 10d | 2026-11-21 | 2026-12-01 | RSZone 3Road 07Irrigation NetworkA80010 |  |  |  | 71.4d | 0d | Contract Price Original Scope [1614.16 SAR]; Pump Operator [20 h]; Equipment Operator [20 h]; Labour [13.78 h]; Buried Valves [6] | 1,614.16 |  | RD7 |
| RSZone 3Road 07Irrigation NetworkA80030 |  | Zone 3 - Road 7 - Lateral Irrigation Network - Buried Valves - Backfilling | 10d | 2026-12-02 | 2026-12-13 | RSZone 3Road 07Irrigation NetworkA80020 |  |  |  | 71.4d | 70.76d | Contract Price Original Scope [807.08 SAR]; Excavator Operator [20 h]; Compactor Operator [20 h]; Dump Truck Operator [20 h]; Water Truck Operator [20 h]; Labour [6.89 h]; Buried Valves [6] | 807.08 |  | RD7 |
|  | 5 | **Thrust Block** |  | 2026-11-21 | 2026-11-22 |  |  |  |  |  |  |  |  |  |  |
| RSZone 3Road 07Irrigation NetworkA80800 |  | Zone 3 - Road 7 - Lateral Irrigation Network - Thrust Block - Thrust Block | 1.4d | 2026-11-21 | 2026-11-22 | RSZone 3Road 07Irrigation NetworkA87230 |  |  |  | 86.5d | 0d | Contract Price Original Scope [3065.28 SAR]; Crane Operator [14 h]; Pump Operator [14 h]; Equipment Operator [14 h]; Labour [26.17 h]; Thrust Blocks [3] | 3,065.28 |  | RD7 |
|  | 1 | **Telecom** |  | 2026-09-27 | 2026-12-08 |  |  |  |  |  |  |  |  |  |  |
|  | 1 | **Telecom Pipe** |  | 2026-09-27 | 2026-11-18 |  |  |  |  |  |  |  |  |  |  |
| RSZone 3Road 07Telecom NetworkA87080-old |  | Zone 3 - Road 7 - Telecom Network - Telecom Pipe - Excavation (old) | 31d | 2026-09-27 A | 2026-11-01 A | RSZone 3Road 06Telecom NetworkA86990 | 100% |  |  |  |  | Contract Price Original Scope [981.63 SAR]; Excavator Operator [0.75 h]; Dump Truck Operator [0.75 h]; Labour [8.38 h]; Telecom Pipe [45.55] | 981.63 | 981.63 | RD7 |
| RSZone 3Road 07Telecom NetworkA87090-old |  | Zone 3 - Road 7 - Telecom Network - Telecom Pipe - Concrete Pouring (old) | 30d | 2026-09-28 A | 2026-11-01 A | RSZone 3Road 07Telecom NetworkA87080-old | 100% |  |  |  |  | Contract Price Original Scope [7047.62 SAR]; Crane Operator [0.33 h]; Pump Operator [0.33 h]; Equipment Operator [0.33 h]; Labour [60.17 h]; Telecom Pipe [46.72] | 7,047.62 | 7,047.62 | RD7 |
| RSZone 3Road 07Telecom NetworkA87080 |  | Zone 3 - Road 7 - Telecom Network - Telecom Pipe - Excavation | 2.92d | 2026-11-09 | 2026-11-11 | RSZone 3Road 07Telecom NetworkA87080-old |  |  |  | 98.19d | 0d | Contract Price Original Scope [38283.7 SAR]; Excavator Operator [29.25 h]; Dump Truck Operator [29.25 h]; Labour [326.85 h]; Telecom Pipe [1776.45] | 38,283.68 |  | RD7 |
| RSZone 3Road 07Telecom NetworkA87090 |  | Zone 3 - Road 7 - Telecom Network - Telecom Pipe - Concrete Pouring | 1.27d | 2026-11-11 | 2026-11-14 | RSZone 3Road 07Telecom NetworkA87090-old, RSZone 3Road 07Telecom NetworkA87080 |  |  |  | 98.21d | 0d | Contract Price Original Scope [267810 SAR]; Crane Operator [12.67 h]; Pump Operator [12.67 h]; Equipment Operator [12.67 h]; Labour [2286.42 h]; Telecom Pipe [1775.28] | 267,809.56 |  | RD7 |
| RSZone 3Road 07Telecom NetworkA87100 |  | Zone 3 - Road 7 - Telecom Network - Telecom Pipe - Test | 2d | 2026-11-14 | 2026-11-16 | RSZone 3Road 07Telecom NetworkA87090 |  |  |  | 98.21d | 0d | Contract Price Original Scope [39265.3 SAR]; Pump Operator [20 h]; Equipment Operator [20 h]; Labour [335.23 h]; Telecom Pipe [1822] | 39,265.31 |  | RD7 |
| RSZone 3Road 07Telecom NetworkA87110 |  | Zone 3 - Road 7 - Telecom Network - Telecom Pipe - Backfilling | 2d | 2026-11-16 | 2026-11-18 | RSZone 3Road 07Telecom NetworkA87100, RSZone 3Road 07Telecom NetworkA87080 |  |  |  | 98.21d | 97.81d | Contract Price Original Scope [39265.3 SAR]; Excavator Operator [20 h]; Compactor Operator [20 h]; Dump Truck Operator [20 h]; Water Truck Operator [20 h]; Labour [335.23 h]; Telecom Pipe [1822] | 39,265.31 |  | RD7 |
|  | 2 | **TELECOM MANHOLE** |  | 2026-09-29 | 2026-12-08 |  |  |  |  |  |  |  |  |  |  |
| RSZone 3Road 07Telecom NetworkA87160-old |  | Zone 3 - Road 7 - Telecom Network - TELECOM MANHOLE - Manhole Installation (old) | 29d | 2026-09-29 A | 2026-11-01 A | RSZone 3Road 06Telecom NetworkA87030-old | 100% |  |  |  |  | Contract Price Original Scope [57030.7 SAR]; Crane Operator [11.4 h]; Boom Truck Operator [11.4 h]; Equipment Operator [11.4 h]; Labour [486.9 h]; Telecom Manhole [3.8] | 57,030.67 | 57,030.67 | RD7 |
| RSZone 3Road 07Telecom NetworkA87160 |  | Zone 3 - Road 7 - Telecom Network - TELECOM MANHOLE - Manhole Installation | 1d | 2026-12-08 | 2026-12-08 | RSZone 3Road 07Telecom NetworkA87160-old, RSZone 3Road 06Telecom NetworkA87030 |  |  |  | 76.4d | 0d | Contract Price Original Scope [3001.61 SAR]; Crane Operator [0.6 h]; Boom Truck Operator [0.6 h]; Equipment Operator [0.6 h]; Labour [25.63 h]; Telecom Manhole [0.2] | 3,001.61 |  | RD7 |
|  | 16 | **Road 10** |  | 2026-04-06 | 2027-04-03 |  |  |  |  |  |  |  |  |  |  |
|  | 2 | **Storm Network** |  | 2026-06-25 | 2027-04-03 |  |  |  |  |  |  |  |  |  |  |
|  | 1 | **Storm Pipes 700 MM** |  | 2026-06-28 | 2026-11-12 |  |  |  |  |  |  |  |  |  |  |
| RSZone 3Road 10Storm NetworkA87620 |  | Zone 3 - Road 10 - Storm Network - Storm Pipes 700 MM - Excavation | 3d | 2026-06-28 A | 2026-06-30 A | RSZone 3Road 07Storm NetworkA87220 | 100% |  |  |  |  | Contract Price Original Scope [3172.04 SAR]; Excavator Operator [30 h]; Dump Truck Operator [30 h]; Labour [27.08 h]; Storm Pipes 700 MM [32] | 3,172.04 | 3,172.04 | RD10Z3 |
| RSZone 3Road 10Storm NetworkA87630 |  | Zone 3 - Road 10 - Storm Network - Storm Pipes 700 MM - Bedding | 1.9d | 2026-07-01 A | 2026-07-02 A | RSZone 3Road 10Storm NetworkA87620 | 100% |  |  |  |  | Contract Price Original Scope [8212.78 SAR]; Compactor Operator [20 h]; Equipment Operator [20 h]; Water Truck Operator [20 h]; Labour [70.12 h]; Storm Pipes 700 MM - Bedding [32] | 8,212.78 | 8,212.78 | RD10Z3 |
| RSZone 3Road 10Storm NetworkA87640 |  | Zone 3 - Road 10 - Storm Network - Storm Pipes 700 MM - Pipe Installation | 5d | 2026-07-02 A | 2026-07-07 A | RSZone 3Road 10Storm NetworkA87630 | 100% | 2026-07-02 | 2026-07-08 |  |  | Contract Price Original Scope [22204.3 SAR]; Excavator Operator [40 h]; Crane Operator [40 h]; Equipment Operator [40 h]; Labour [189.57 h]; Storm Pipes 700 MM [32] | 22,204.26 | 22,204.26 | RD10Z3 |
| RSZone 3Road 10Storm NetworkA87650 |  | Zone 3 - Road 10 - Storm Network - Storm Pipes 700 MM - Test | 2d | 2026-11-09 | 2026-11-10 | RSZone 3Road 10Storm NetworkA87640 |  |  |  | 121.4d | 0d | Contract Price Original Scope [3172.04 SAR]; Pump Operator [20 h]; Equipment Operator [20 h]; Labour [27.08 h]; Storm Pipes 700 MM [32] | 3,172.04 |  | RD10Z3 |
| RSZone 3Road 10Storm NetworkA87660 |  | Zone 3 - Road 10 - Storm Network - Storm Pipes 700 MM - Backfilling | 2d | 2026-11-11 | 2026-11-12 | RSZone 3Road 10Storm NetworkA87650 |  |  |  | 121.4d | 107d | Contract Price Original Scope [3172.04 SAR]; Excavator Operator [20 h]; Compactor Operator [20 h]; Dump Truck Operator [20 h]; Water Truck Operator [20 h]; Labour [27.08 h]; Storm Pipes 700 MM [32] | 3,172.04 |  | RD10Z3 |

| ID | WBS | Activity | Duration | Start | Finish | Predecessors | Complete | Planned start | Planned finish | Total float | Free float | Resources | Cost | Actual cost | MODON |
| --- | --- | --- | --- | --- | --- | --- | --- | --- | --- | --- | --- | --- | --- | --- | --- |
|  | 2 | **Perforated 160 mm** |  | 2026-06-28 | 2026-11-10 |  |  |  |  |  |  |  |  |  |  |
| RSZone 3Road 10Storm NetworkA87520 |  | Zone 3 - Road 10 - Storm Network - Perforated 160 mm - Excavation | 4d | 2026-06-28 A | 2026-07-01 A | RSZone 3Road 10Storm NetworkA87640 | 100% |  |  |  |  | Contract Price Original Scope [65850.6 SAR]; Excavator Operator [30 h]; Dump Truck Operator [30 h]; Labour [562.2 h]; Perforated 160 mm [4120] | 65,850.63 | 65,850.63 | RD10Z3 |
| RSZone 3Road 10Storm NetworkA87530 |  | Zone 3 - Road 10 - Storm Network - Perforated 160 mm - Bedding | 3d | 2026-07-02 A | 2026-07-05 A | RSZone 3Road 10Storm NetworkA87520 | 100% | 2026-07-02 | 2026-07-06 |  |  | Contract Price Original Scope [32925.3 SAR]; Compactor Operator [20 h]; Equipment Operator [20 h]; Water Truck Operator [20 h]; Labour [281.1 h]; Perforated 160 mm [4120] | 32,925.32 | 32,925.32 | RD10Z3 |
| RSZone 3Road 10Storm NetworkA87540 |  | Zone 3 - Road 10 - Storm Network - Perforated 160 mm - Pipe Installation | 3d | 2026-07-06 A | 2026-07-08 A | RSZone 3Road 10Storm NetworkA87530 | 100% |  |  |  |  | Contract Price Original Scope [428029 SAR]; Excavator Operator [40 h]; Crane Operator [40 h]; Equipment Operator [40 h]; Labour [3654.29 h]; Perforated 160 mm [4120] | 428,029.11 | 428,029.11 | RD10Z3 |
| RSZone 3Road 10Storm NetworkA87560 |  | Zone 3 - Road 10 - Storm Network - Perforated 160 mm - Backfilling | 5d | 2026-07-09 A | 2026-07-14 A | RSZone 3Road 10Storm NetworkA87540 | 100% | 2026-07-09 | 2026-07-15 |  |  | Contract Price Original Scope [65850.6 SAR]; Excavator Operator [20 h]; Compactor Operator [20 h]; Dump Truck Operator [20 h]; Water Truck Operator [20 h]; Labour [562.2 h]; Perforated 160 mm [4120] | 65,850.63 | 65,850.63 | RD10Z3 |
| RSZone 3Road 10Storm NetworkA87550 |  | Zone 3 - Road 10 - Storm Network - Perforated 160 mm - Test | 2d | 2026-11-09 | 2026-11-10 | RSZone 3Road 10Storm NetworkA87560 |  |  |  | 123.4d | 109d | Contract Price Original Scope [65850.6 SAR]; Pump Operator [20 h]; Equipment Operator [20 h]; Labour [562.2 h]; Perforated 160 mm [4120] | 65,850.63 |  | RD10Z3 |
|  | 3 | **Gravel and Geotextile** |  | 2026-06-25 | 2026-06-28 |  |  |  |  |  |  |  |  |  |  |
| RSZone 3Road 10Storm NetworkA87510 |  | Zone 3 - Road 10 - Storm Network - Gravel and Geotextile - Installation | 3d | 2026-06-25 A | 2026-06-28 A | RSZone 3Road 10Storm NetworkA87560 | 100% | 2026-06-25 | 2026-06-29 |  |  | Contract Price Original Scope [483269 SAR]; Excavator Operator [7 h]; Dump Truck Operator [7 h]; Equipment Operator [7 h]; Water Truck Operator [7 h]; Labour [4125.9 h]; Gravel and Geotextile [4120] | 483,268.85 | 483,268.85 | RD10Z3 |
|  | 6 | **Box Culvert** |  | 2027-02-27 | 2027-03-28 |  |  |  |  |  |  |  |  |  |  |
| RSZone 3Road 10Storm NetworkA87570 |  | Zone 3 - Road 10 - Storm Network - Box Culvert - Excavation | 5d | 2027-02-27 | 2027-03-08 | RSZone 3Road 04Storm NetworkA95410 SS |  |  |  | 14.4d | 0d | Contract Price Original Scope [9481.29 SAR]; Excavator Operator [30 h]; Dump Truck Operator [30 h]; Labour [80.95 h]; Box Culvert (all sizes/depths) [22] | 9,481.29 |  | RD10Z3 |
| RSZone 3Road 10Storm NetworkA87590 |  | Zone 3 - Road 10 - Storm Network - Box Culvert - SLAB INSTALLATIO | 3d | 2027-03-08 | 2027-03-14 | RSZone 3Road 10Storm NetworkA87570 |  |  |  | 19.4d | 0d | Contract Price Original Scope [18962.6 SAR]; Crane Operator [7 h]; Pump Operator [7 h]; Equipment Operator [7 h]; Labour [161.89 h]; Box Culvert (all sizes/depths) [22] | 18,962.59 |  | RD10Z3 |
| RSZone 3Road 10Storm NetworkA87580 |  | Zone 3 - Road 10 - Storm Network - Box Culvert - Installation | 3d | 2027-03-14 | 2027-03-23 | RSZone 3Road 10Storm NetworkA87590 |  |  |  | 19.4d | 0d | Contract Price Original Scope [47406.5 SAR]; Crane Operator [7 h]; Equipment Operator [7 h]; Labour [404.73 h]; Box Culvert (all sizes/depths) [22] | 47,406.47 |  | RD10Z3 |
| RSZone 3Road 10Storm NetworkA87600 |  | Zone 3 - Road 10 - Storm Network - Box Culvert - TEST | 2d | 2027-03-23 | 2027-03-25 | RSZone 3Road 10Storm NetworkA87580 |  |  |  | 19.4d | 0d | Contract Price Original Scope [9481.29 SAR]; Pump Operator [20 h]; Equipment Operator [20 h]; Labour [80.95 h]; Box Culvert (all sizes/depths) [22] | 9,481.29 |  | RD10Z3 |
| RSZone 3Road 10Storm NetworkA87610 |  | Zone 3 - Road 10 - Storm Network - Box Culvert - BACKFILLING | 2d | 2027-03-25 | 2027-03-28 | RSZone 3Road 10Storm NetworkA87600 |  |  |  | 19.4d | 5d | Contract Price Original Scope [9481.29 SAR]; Excavator Operator [20 h]; Compactor Operator [20 h]; Dump Truck Operator [20 h]; Water Truck Operator [20 h]; Labour [80.95 h]; Box Culvert (all sizes/depths) [22] | 9,481.29 |  | RD10Z3 |
|  | 4 | **Concrete Manholes on Box Culvert** |  | 2027-02-27 | 2027-04-03 |  |  |  |  |  |  |  |  |  |  |
| RSZone 3Road 10Storm NetworkA95480 |  | Zone 3 - Road 10 - Storm Network - Concrete Manholes on Box Culvert - Excavation | 3d | 2027-02-27 | 2027-03-03 | RSZone 3Road 10Storm NetworkA87570 SS |  |  |  | 14.4d | 0d | Contract Price Original Scope [22621.5 SAR]; Labour [193.13 h]; Concrete Manholes on Box Culvert - Manhole with a depth of 1.5-2.0 m [28] | 22,621.55 |  | RD10Z3 |
| RSZone 3Road 10Storm NetworkA95500 |  | Zone 3 - Road 10 - Storm Network - Concrete Manholes on Box Culvert - Slab | 3d | 2027-03-04 | 2027-03-10 | RSZone 3Road 10Storm NetworkA95480 |  |  |  | 14.4d | 0d | Contract Price Original Scope [158351 SAR]; Labour [1351.92 h]; Concrete Manholes on Box Culvert - Manhole with a depth of 1.5-2.0 m [28] | 158,350.86 |  | RD10Z3 |
| RSZone 3Road 10Storm NetworkA95490 |  | Zone 3 - Road 10 - Storm Network - Concrete Manholes on Box Culvert - Walls | 3d | 2027-03-10 | 2027-03-16 | RSZone 3Road 10Storm NetworkA95500 |  |  |  | 14.4d | 0d | Contract Price Original Scope [90486.2 SAR]; Labour [772.52 h]; Concrete Manholes on Box Culvert - Manhole with a depth of 1.5-2.0 m [28] | 90,486.2 |  | RD10Z3 |
| RSZone 3Road 10Storm NetworkA95520 |  | Zone 3 - Road 10 - Storm Network - Concrete Manholes on Box Culvert - Internal Isolation | 3d | 2027-03-16 | 2027-03-24 | RSZone 3Road 10Storm NetworkA95490 |  |  |  | 14.4d | 0d | Contract Price Original Scope [22621.5 SAR]; Labour [193.13 h]; Concrete Manholes on Box Culvert - Manhole with a depth of 1.5-2.0 m [28] | 22,621.55 |  | RD10Z3 |
| RSZone 3Road 10Storm NetworkA95510 |  | Zone 3 - Road 10 - Storm Network - Concrete Manholes on Box Culvert - D.I Cover | 3d | 2027-03-24 | 2027-03-28 | RSZone 3Road 10Storm NetworkA95520 |  |  |  | 14.4d | 0d | Contract Price Original Scope [45243.1 SAR]; Labour [386.26 h]; Concrete Manholes on Box Culvert - Manhole with a depth of 1.5-2.0 m [106] | 45,243.1 |  | RD10Z3 |
| RSZone 3Road 10Storm NetworkA95530 |  | Zone 3 - Road 10 - Storm Network - Concrete Manholes on Box Culvert - External Isolation | 3d | 2027-03-28 | 2027-03-31 | RSZone 3Road 10Storm NetworkA95510 |  |  |  | 14.4d | 0d | Contract Price Original Scope [22621.5 SAR]; Labour [193.13 h]; Concrete Manholes on Box Culvert - Manhole with a depth of 1.5-2.0 m [28] | 22,621.55 |  | RD10Z3 |
| RSZone 3Road 10Storm NetworkA95540 |  | Zone 3 - Road 10 - Storm Network - Concrete Manholes on Box Culvert - Backfilling | 2d | 2027-03-31 | 2027-04-03 | RSZone 3Road 10Storm NetworkA95530 |  |  |  | 14.4d | 0d | Contract Price Original Scope [22621.5 SAR]; Excavator Operator [20 h]; Compactor Operator [20 h]; Dump Truck Operator [20 h]; Water Truck Operator [20 h]; Labour [193.13 h]; Concrete Manholes on Box Culvert - Manhole with a depth of 1.5-2.0 m [28] | 22,621.55 |  | RD10Z3 |
|  | 8 | **Ponds** |  | 2026-08-19 | 2027-02-17 |  |  |  |  |  |  |  |  |  |  |
| RSZone 3Road 10PondsA87440 |  | Zone 3 - Road 10 - Storm Network - Ponds - blinding & Walls Concerete | 30d | 2026-08-19 A | 2026-09-22 A | RSZone 3Road 10PondsA87430 | 100% |  |  |  |  | Contract Price Original Scope [5092.25 SAR]; Crane Operator [55 h]; Pump Operator [55 h]; Equipment Operator [55 h]; Labour [43.47 h]; Ponds - blinding & Walls Concerete [5] | 5,092.25 | 5,092.25 | RD10Z3 |
| RSZone 3Road 10PondsA87450 |  | Zone 3 - Road 10 - Storm Network - Ponds - RAFT Concerete | 34d | 2026-08-19 A | 2026-09-28 A | RSZone 3Road 10PondsA87440 | 100% |  |  |  |  | Contract Price Original Scope [17977.5 SAR]; Equipment Operator [55 h]; Labour [153.48 h]; Ponds - RAFT Concerete [18] | 17,977.48 | 17,977.48 | RD10Z3 |
| RSZone 3Road 10PondsA87480 |  | Zone 3 - Road 10 - Storm Network - Ponds - Perimeter waterproof | 41d | 2026-08-19 A | 2026-10-06 A | RSZone 3Road 10PondsA87450 | 100% |  |  |  |  | Contract Price Original Scope [10225.8 SAR]; Equipment Operator [109 h]; Labour [87.3 h]; Ponds - Perimeter waterproof [180] | 10,225.8 | 10,225.8 | RD10Z3 |
| RSZone 3Road 10PondsA87500 |  | Zone 3 - Road 10 - Storm Network - Ponds - Riprap | 42.9d | 2026-08-19 A | 2026-10-08 A | RSZone 3Road 10PondsA87480 | 100% |  |  |  |  | Contract Price Original Scope [104592 SAR]; Excavator Operator [400 h]; Dump Truck Operator [400 h]; Equipment Operator [400 h]; Water Truck Operator [400 h]; Labour [892.95 h]; Ponds - Riprap [601] | 104,592.03 | 104,592.03 | RD10Z3 |
| RSZone 3Road 10PondsA94230 |  | Zone 3 - Road 10 - Storm Network - Ponds - Vertical Concrete (G143) | 47d | 2026-08-19 A | 2026-10-13 A | RSZone 3Road 10PondsA87500 | 100% |  |  |  |  | Contract Price Original Scope [5285.91 SAR]; Equipment Operator [109 h]; Labour [45.13 h]; Ponds - Vertical Concrete (G143) [4.79] | 5,285.91 | 5,285.91 | RD10Z3 |
| RSZone 3Road 10PondsA94240 |  | Zone 3 - Road 10 - Storm Network - Ponds - Reinforcement Steel 12 mm (G524) | 52d | 2026-08-19 A | 2026-10-19 A | RSZone 3Road 10PondsA94230 | 100% |  |  |  |  | Contract Price Original Scope [60992.3 SAR]; Equipment Operator [109 h]; Labour [520.72 h]; Ponds - Reinforcement Steel 12 mm (G524) [10.51] | 60,992.32 | 60,992.32 | RD10Z3 |
| RSZone 3Road 10PondsA87380 |  | Zone 3 - Road 10 - Storm Network - Ponds - Clearnce | 5d | 2026-08-26 A | 2026-08-31 A | Milestone.1 | 100% |  |  |  |  | Contract Price Original Scope [487266 SAR]; Excavator Operator [57 h]; Dump Truck Operator [57 h]; Equipment Operator [57 h]; Labour [4160.03 h]; Ponds - Clearnce [179803] | 487,266.13 | 487,266.13 | RD10Z3 |
| RSZone 3Road 10PondsA87410 |  | Zone 3 - Road 10 - Storm Network - Ponds - Filter | 3d | 2026-09-07 A | 2026-09-09 A | RSZone 3Road 10PondsA87380 | 100% |  |  |  |  | Contract Price Original Scope [50807.8 SAR]; Equipment Operator [55 h]; Labour [433.77 h]; Ponds - Filter [295] | 50,807.85 | 50,807.85 | RD10Z3 |
| RSZone 3Road 10PondsA87420 |  | Zone 3 - Road 10 - Storm Network - Ponds - HDPE geomembrane waterproofing | 5d | 2026-09-10 A | 2026-09-15 A | RSZone 3Road 10PondsA87410 | 100% | 2026-09-10 | 2026-09-16 |  |  | Contract Price Original Scope [327935 SAR]; Equipment Operator [109 h]; Labour [2799.74 h]; Ponds - HDPE geomembrane waterproofing [6862] | 327,934.98 | 327,934.98 | RD10Z3 |
| RSZone 3Road 10PondsA87430 |  | Zone 3 - Road 10 - Storm Network - Ponds - Siphon pipework | 4d | 2026-09-16 A | 2026-09-20 A | RSZone 3Road 10PondsA87420 | 100% |  |  |  |  | Contract Price Original Scope [88450.6 SAR]; Excavator Operator [55 h]; Crane Operator [55 h]; Equipment Operator [55 h]; Labour [755.15 h]; Ponds - Siphon pipework [4] | 88,450.6 | 88,450.6 | RD10Z3 |
| RSZone 3Road 10PondsA87390-old |  | Zone 3 - Road 10 - Storm Network - Ponds - Excavation (old) | 31d | 2026-09-27 A | 2026-11-01 A | RSZone 3Road 10PondsA87400-old | 100% |  |  |  |  | Contract Price Original Scope [2090425 SAR]; Excavator Operator [27 h]; Dump Truck Operator [27 h]; Labour [17847 h]; Ponds - Excavation [136362] | 2,090,424.86 | 2,090,424.86 | RD10Z3 |
| RSZone 3Road 10PondsA87400-old |  | Zone 3 - Road 10 - Storm Network - Ponds - Disposal Material (old) | 29d | 2026-09-29 A | 2026-11-01 A | RSZone 3Road 10PondsA94240, RSZone 1Road 31PondsA29500-old | 100% |  |  |  |  | Contract Price Original Scope [1540790 SAR]; Excavator Operator [106.82 h]; Dump Truck Operator [106.82 h]; Equipment Operator [106.82 h]; Labour [13154.5 h]; Ponds - Disposal Material [122091] | 1,540,790.39 | 1,540,790.39 | RD10Z3 |
| RSZone 3Road 10PondsA87460-old |  | Zone 3 - Road 10 - Storm Network - Ponds - Backfilling (old) | 28d | 2026-09-30 A | 2026-11-01 A | RSZone 3Road 10PondsA87390-old | 100% |  |  |  |  | Contract Price Original Scope [410021 SAR]; Excavator Operator [9.65 h]; Compactor Operator [9.65 h]; Dump Truck Operator [9.65 h]; Water Truck Operator [9.65 h]; Labour [3500.55 h]; Ponds - Backfilling [12991.8] | 410,021.05 | 410,021.05 | RD10Z3 |
| RSZone 3Road 10PondsA87400 |  | Zone 3 - Road 10 - Storm Network - Ponds - Disposal Material | 1d | 2026-11-12 | 2026-11-12 | RSZone 3Road 10PondsA87400-old, RSZone 1Road 31PondsA29500 |  |  |  | 60.36d | 0d | Contract Price Original Scope [31493.8 SAR]; Excavator Operator [2.18 h]; Dump Truck Operator [2.18 h]; Equipment Operator [2.18 h]; Labour [268.88 h]; Ponds - Disposal Material [2495.55] | 31,493.77 |  | RD10Z3 |
| RSZone 3Road 10PondsA87390 |  | Zone 3 - Road 10 - Storm Network - Ponds - Excavation | 1d | 2026-11-14 | 2026-11-14 | RSZone 3Road 10PondsA87390-old, RSZone 3Road 10PondsA87400 |  |  |  | 60.36d | 0d | Contract Price Original Scope [232269 SAR]; Excavator Operator [3 h]; Dump Truck Operator [3 h]; Labour [1983 h]; Ponds - Excavation [15151.3] | 232,269.43 |  | RD10Z3 |
| RSZone 3Road 10PondsA87460 |  | Zone 3 - Road 10 - Storm Network - Ponds - Backfilling | 1.03d | 2026-11-15 | 2026-11-16 | RSZone 3Road 10PondsA87460-old, RSZone 3Road 10PondsA87390 |  |  |  | 60.36d | 60.15d | Contract Price Original Scope [439764 SAR]; Excavator Operator [10.35 h]; Compactor Operator [10.35 h]; Dump Truck Operator [10.35 h]; Water Truck Operator [10.35 h]; Labour [3754.47 h]; Ponds - Backfilling [13934.2] | 439,763.51 |  | RD10Z3 |
| RSZone 3Road 10PondsA87490 |  | Zone 3 - Road 10 - Storm Network - Ponds - Entrance Rood | 20d | 2027-01-25 | 2027-02-17 | RSZone 3Road 10PondsA87460, RSZone 1Road 31PondsA29590, RSZone 3Road 10PondsA87390, RSZone 3Road 10PondsA87400 |  |  |  | 0.21d | 0d | Contract Price Original Scope [174123 SAR]; Grader Operator [37 h]; Paver Operator [37 h]; Compactor Operator [37 h]; Dozer Operator [37 h]; Water Truck Operator [37 h]; Labour [1486.57 h]; Ponds - Entrance Rood [3065] | 174,122.65 |  | RD10Z3 |

| ID | WBS | Activity | Duration | Start | Finish | Predecessors | Complete | Total float | Free float | Resources | Cost | Actual cost | MODON |
| --- | --- | --- | --- | --- | --- | --- | --- | --- | --- | --- | --- | --- | --- |
|  | 13 | **Potable Water Network** |  | 2026-04-19 | 2027-03-18 |  |  |  |  |  |  |  |  |
|  | 12 | **FIRE HYDRANT** |  | 2026-09-06 | 2026-11-22 |  |  |  |  |  |  |  |  |
| RSZone 3Road 10Potable NetworkA84130-old |  | Zone 3 - Road 10 - Potable Water Network - FIRE HYDRANT - Excavation (old) | 48d | 2026-09-06 A | 2026-11-01 A | RSZone 3Road 07Potable NetworkA84070-old | 100% |  |  | Contract Price Original Scope [27741 SAR]; Excavator Operator [28.57 h]; Dump Truck Operator [28.57 h]; Labour [236.84 h]; Fire Hydrant [20] | 27,741.02 | 27,741.02 | RD10Z3 |
| RSZone 3Road 10Potable NetworkA84140-old |  | Zone 3 - Road 10 - Potable Water Network - FIRE HYDRANT - Buried Gate Valve Installation (old) | 47d | 2026-09-07 A | 2026-11-01 A | RSZone 3Road 10Potable NetworkA84130-old | 100% |  |  | Labour; Fire Hydrant [20] |  |  | RD10Z3 |
| RSZone 3Road 10Potable NetworkA84150-old |  | Zone 3 - Road 10 - Potable Water Network - FIRE HYDRANT - Fire Hydrant Installation (old) | 45d | 2026-09-09 A | 2026-11-01 A | RSZone 3Road 10Potable NetworkA84140-old | 100% |  |  | Contract Price Original Scope [202509 SAR]; Labour [1728.92 h]; Fire Hydrant [20] | 202,509.41 | 202,509.41 | RD10Z3 |
| RSZone 3Road 10Potable NetworkA84130 |  | Zone 3 - Road 10 - Potable Water Network - FIRE HYDRANT - Excavation | 1d | 2026-11-10 | 2026-11-10 | RSZone 3Road 10Potable NetworkA84130-old, RSZone 3Road 07Potable NetworkA84070 |  | 90.3d | 0d | Contract Price Original Scope [1391.91 SAR]; Excavator Operator [1.43 h]; Dump Truck Operator [1.43 h]; Labour [11.88 h]; Fire Hydrant [1] | 1,391.91 |  | RD10Z3 |
| RSZone 3Road 10Potable NetworkA84140 |  | Zone 3 - Road 10 - Potable Water Network - FIRE HYDRANT - Buried Gate Valve Installation | 1.1d | 2026-11-11 | 2026-11-12 | RSZone 3Road 10Potable NetworkA84140-old, RSZone 3Road 10Potable NetworkA84130 |  | 90.3d | 0d | Labour; Fire Hydrant [1] |  |  | RD10Z3 |
| RSZone 3Road 10Potable NetworkA84150 |  | Zone 3 - Road 10 - Potable Water Network - FIRE HYDRANT - Fire Hydrant Installation | 1d | 2026-11-12 | 2026-11-14 | RSZone 3Road 10Potable NetworkA84150-old, RSZone 3Road 10Potable NetworkA84140 |  | 90.3d | 0d | Contract Price Original Scope [10160.9 SAR]; Labour [86.75 h]; Fire Hydrant [1] | 10,160.92 |  | RD10Z3 |
| RSZone 3Road 10Potable NetworkA84160 |  | Zone 3 - Road 10 - Potable Water Network - FIRE HYDRANT - Surface Box | 3d | 2026-11-14 | 2026-11-17 | RSZone 3Road 10Potable NetworkA84150, RSZone 3Road 10Potable NetworkA84130, RSZone 3Road 10Potable NetworkA84140 |  | 90.3d | 0d | Labour; Fire Hydrant [21] |  |  | RD10Z3 |
| RSZone 3Road 10Potable NetworkA84170 |  | Zone 3 - Road 10 - Potable Water Network - FIRE HYDRANT - Test | 2d | 2026-11-17 | 2026-11-19 | RSZone 3Road 10Potable NetworkA84160 |  | 90.3d | 0d | Contract Price Original Scope [20393 SAR]; Pump Operator [20 h]; Equipment Operator [20 h]; Labour [174.11 h]; Fire Hydrant [21] | 20,393.05 |  | RD10Z3 |
| RSZone 3Road 10Potable NetworkA84180 |  | Zone 3 - Road 10 - Potable Water Network - FIRE HYDRANT - Backfilling | 2d | 2026-11-19 | 2026-11-22 | RSZone 3Road 10Potable NetworkA84170 |  | 90.3d | 90.1d | Contract Price Original Scope [29132.9 SAR]; Excavator Operator [20 h]; Compactor Operator [20 h]; Dump Truck Operator [20 h]; Water Truck Operator [20 h]; Labour [248.72 h]; Fire Hydrant [21] | 29,132.92 |  | RD10Z3 |
|  | 3 | **Fittings** |  | 2026-04-19 | 2026-04-20 |  |  |  |  |  |  |  |  |
|  | 4 | **Tees** |  | 2026-04-19 | 2026-04-20 |  |  |  |  |  |  |  |  |
| RSZone 3Road 10Potable NetworkA82610 |  | Zone 3 - Road 10 - Potable Water Network - Tees - Installation | 2d | 2026-04-19 A | 2026-04-20 A | RSZone 3Road 07Potable NetworkA82850 | 100% |  |  | Contract Price Original Scope [14998 SAR]; Labour [128.05 h]; Fittings - Tees (all sizes) [5] | 14,998.01 | 14,998.01 | RD10Z3 |
|  | 2 | **Valves** |  | 2026-04-29 | 2027-03-18 |  |  |  |  |  |  |  |  |
|  | 7 | **Air Valves** |  | 2027-02-06 | 2027-02-15 |  |  |  |  |  |  |  |  |
| RSZone 3Road 10Potable NetworkA83350 |  | Zone 3 - Road 10 - Potable Water Network - Air Valves - Installation | 3d | 2027-02-06 | 2027-02-09 | RSZone 3Road 06Potable NetworkA94120 SS |  | 0.2d | 0d | Labour; Washout / Air / other Valves [1] |  |  | RD10Z3 |
| RSZone 3Road 10Potable NetworkA83360 |  | Zone 3 - Road 10 - Potable Water Network - Air Valves - Surface Box | 3d | 2027-02-09 | 2027-02-13 | RSZone 3Road 10Potable NetworkA83350 |  | 17.2d | 0d | Labour; Washout / Air / other Valves [1] |  |  | RD10Z3 |
| RSZone 3Road 10Potable NetworkA83370 |  | Zone 3 - Road 10 - Potable Water Network - Air Valves - Test | 2d | 2027-02-13 | 2027-02-15 | RSZone 3Road 10Potable NetworkA83360 |  | 17.2d | 17d | Pump Operator [20 h]; Equipment Operator [20 h]; Labour; Washout / Air / other Valves [1] |  |  | RD10Z3 |
|  | 5 | **Washout Valves 355 MM** |  | 2027-02-09 | 2027-02-18 |  |  |  |  |  |  |  |  |
| RSZone 3Road 10Potable NetworkA83250 |  | Zone 3 - Road 10 - Potable Water Network - Washout Valves 355 MM - Installation | 3d | 2027-02-09 | 2027-02-13 | RSZone 3Road 10Potable NetworkA83350 |  | 0.2d | 0d | Labour; Washout / Air / other Valves [2] |  |  | RD10Z3 |
| RSZone 3Road 10Potable NetworkA83260 |  | Zone 3 - Road 10 - Potable Water Network - Washout Valves 355 MM - Surface Box | 3d | 2027-02-13 | 2027-02-16 | RSZone 3Road 10Potable NetworkA83250 |  | 14.2d | 0d | Labour; Washout / Air / other Valves [2] |  |  | RD10Z3 |
| RSZone 3Road 10Potable NetworkA83270 |  | Zone 3 - Road 10 - Potable Water Network - Washout Valves 355 MM - Test | 2d | 2027-02-16 | 2027-02-18 | RSZone 3Road 10Potable NetworkA83260 |  | 14.2d | 14d | Pump Operator [20 h]; Equipment Operator [20 h]; Labour; Washout / Air / other Valves [2] |  |  | RD10Z3 |
|  | 1 | **Washout Valves 560 MM** |  | 2027-02-13 | 2027-02-24 |  |  |  |  |  |  |  |  |
| RSZone 3Road 10Potable NetworkA94250 |  | Zone 3 - Road 10 - Potable Water Network - Washout Valves 560 MM - Installation | 3d | 2027-02-13 | 2027-02-16 | RSZone 3Road 10Potable NetworkA83250 |  | 0.2d | 0d | Labour; Washout / Air / other Valves [1] |  |  | RD10Z3 |
| RSZone 3Road 10Potable NetworkA94260 |  | Zone 3 - Road 10 - Potable Water Network - Washout Valves 560 MM - Surface Box | 3d | 2027-02-16 | 2027-02-20 | RSZone 3Road 10Potable NetworkA94250 |  | 11.2d | 0d | Labour; Washout / Air / other Valves [1] |  |  | RD10Z3 |
| RSZone 3Road 10Potable NetworkA94270 |  | Zone 3 - Road 10 - Potable Water Network - Washout Valves 560 MM - Test | 2d | 2027-02-20 | 2027-02-24 | RSZone 3Road 10Potable NetworkA94260 |  | 11.2d | 11d | Pump Operator [20 h]; Equipment Operator [20 h]; Labour; Washout / Air / other Valves [1] |  |  | RD10Z3 |

| ID | WBS | Activity | Duration | Start | Finish | Predecessors | Complete | Total float | Free float | Resources | Cost | Actual cost | MODON |
| --- | --- | --- | --- | --- | --- | --- | --- | --- | --- | --- | --- | --- | --- |
|  | 3 | **Buried Valves** |  | 2026-04-29 | 2026-11-16 |  |  |  |  |  |  |  |  |
| RSZone 3Road 10Potable NetworkA82890 |  | Zone 3 - Road 10 - Potable Water Network - Buried Valves - Excavation | 4d | 2026-04-29 A | 2026-05-03 A | RSZone 3Road 10Potable NetworkA82610 | 100% |  |  | Contract Price Original Scope [1281.52 SAR]; Excavator Operator [30 h]; Dump Truck Operator [30 h]; Labour [10.94 h]; Buried Valves [8] | 1,281.52 | 1,281.52 | RD10Z3 |
| RSZone 3Road 10Potable NetworkA82900 |  | Zone 3 - Road 10 - Potable Water Network - Buried Valves - Installation | 3d | 2026-05-04 A | 2026-05-06 A | RSZone 3Road 10Potable NetworkA82890 | 100% |  |  | Contract Price Original Scope [16659.7 SAR]; Labour [142.23 h]; Buried Valves [8] | 16,659.74 | 16,659.74 | RD10Z3 |
| RSZone 3Road 10Potable NetworkA82910 |  | Zone 3 - Road 10 - Potable Water Network - Buried Valves - Surface Box | 3d | 2026-11-09 | 2026-11-11 | RSZone 3Road 10Potable NetworkA82900 |  | 94.4d | 0d | Labour; Buried Valves [8] |  |  | RD10Z3 |
| RSZone 3Road 10Potable NetworkA82920 |  | Zone 3 - Road 10 - Potable Water Network - Buried Valves - Test | 2d | 2026-11-12 | 2026-11-14 | RSZone 3Road 10Potable NetworkA82910 |  | 94.4d | 0d | Contract Price Original Scope [5126.07 SAR]; Pump Operator [20 h]; Equipment Operator [20 h]; Labour [43.76 h]; Buried Valves [8] | 5,126.07 |  | RD10Z3 |
| RSZone 3Road 10Potable NetworkA82930 |  | Zone 3 - Road 10 - Potable Water Network - Buried Valves - Backfilling | 2d | 2026-11-15 | 2026-11-16 | RSZone 3Road 10Potable NetworkA82920 |  | 94.4d | 94.2d | Contract Price Original Scope [2563.04 SAR]; Excavator Operator [20 h]; Compactor Operator [20 h]; Dump Truck Operator [20 h]; Water Truck Operator [20 h]; Labour [21.88 h]; Buried Valves [8] | 2,563.04 |  | RD10Z3 |
|  | 4 | **Butterfly Valves 355 MM** |  | 2027-02-16 | 2027-03-02 |  |  |  |  |  |  |  |  |
| RSZone 3Road 10Potable NetworkA83150 |  | Zone 3 - Road 10 - Potable Water Network - Butterfly Valves 355 MM - Installation | 3d | 2027-02-16 | 2027-02-20 | RSZone 3Road 10Potable NetworkA94250 |  | 0.2d | 0d | Contract Price Original Scope [112408 SAR]; Labour [959.68 h]; Butterfly Valves [20] | 112,407.75 |  | RD10Z3 |
| RSZone 3Road 10Potable NetworkA83160 |  | Zone 3 - Road 10 - Potable Water Network - Butterfly Valves 355 MM - Surface Box | 3d | 2027-02-20 | 2027-02-27 | RSZone 3Road 10Potable NetworkA83150 |  | 8.2d | 0d | Labour; Butterfly Valves [20] |  |  | RD10Z3 |
| RSZone 3Road 10Potable NetworkA83170 |  | Zone 3 - Road 10 - Potable Water Network - Butterfly Valves 355 MM - Test | 2d | 2027-02-27 | 2027-03-02 | RSZone 3Road 10Potable NetworkA83160 |  | 8.2d | 8d | Contract Price Original Scope [48174.8 SAR]; Pump Operator [20 h]; Equipment Operator [20 h]; Labour [411.29 h]; Butterfly Valves [20] | 48,174.75 |  | RD10Z3 |
|  | 2 | **Butterfly Valves 560 MM** |  | 2027-02-20 | 2027-03-08 |  |  |  |  |  |  |  |  |
| RSZone 3Road 10Potable NetworkA94280 |  | Zone 3 - Road 10 - Potable Water Network - Butterfly Valves 560 MM - Installation | 3d | 2027-02-20 | 2027-02-27 | RSZone 3Road 10Potable NetworkA83150 |  | 0.2d | 0d | Contract Price Original Scope [44963.1 SAR]; Labour [383.87 h]; Butterfly Valves [8] | 44,963.1 |  | RD10Z3 |
| RSZone 3Road 10Potable NetworkA94290 |  | Zone 3 - Road 10 - Potable Water Network - Butterfly Valves 560 MM - Surface Box | 3d | 2027-02-27 | 2027-03-04 | RSZone 3Road 10Potable NetworkA94280 |  | 5.2d | 0d | Labour; Butterfly Valves [8] |  |  | RD10Z3 |
| RSZone 3Road 10Potable NetworkA94300 |  | Zone 3 - Road 10 - Potable Water Network - Butterfly Valves 560 MM - Test | 2d | 2027-03-04 | 2027-03-08 | RSZone 3Road 10Potable NetworkA94290 |  | 5.2d | 5d | Contract Price Original Scope [19269.9 SAR]; Pump Operator [20 h]; Equipment Operator [20 h]; Labour [164.52 h]; Butterfly Valves [8] | 19,269.9 |  | RD10Z3 |
|  | 6 | **Butterfly Valves 710 MM** |  | 2027-02-27 | 2027-03-18 |  |  |  |  |  |  |  |  |
| RSZone 3Road 10Potable NetworkA94310 |  | Zone 3 - Road 10 - Potable Water Network - Butterfly Valves 710 MM - Installation | 5d | 2027-02-27 | 2027-03-08 | RSZone 3Road 10Potable NetworkA94280 |  | 0.2d | 0d | Contract Price Original Scope [16861.2 SAR]; Labour [143.95 h]; Butterfly Valves [3] | 16,861.16 |  | RD10Z3 |
| RSZone 3Road 10Potable NetworkA94320 |  | Zone 3 - Road 10 - Potable Water Network - Butterfly Valves 710 MM - Surface Box | 3d | 2027-03-08 | 2027-03-14 | RSZone 3Road 10Potable NetworkA94310 |  | 0.2d | 0d | Labour; Butterfly Valves [3] |  |  | RD10Z3 |
| RSZone 3Road 10Potable NetworkA94330 |  | Zone 3 - Road 10 - Potable Water Network - Butterfly Valves 710 MM - Test | 2d | 2027-03-15 | 2027-03-18 | RSZone 3Road 10Potable NetworkA94320 |  | 0.2d | 0d | Contract Price Original Scope [7226.21 SAR]; Pump Operator [20 h]; Equipment Operator [20 h]; Labour [61.69 h]; Butterfly Valves [3] | 7,226.21 |  | RD10Z3 |
|  | 1 | **Valve Chambers** |  | 2026-05-06 | 2026-11-21 |  |  |  |  |  |  |  |  |
|  | 10 | **Washout Valve Chambers** |  | 2026-05-06 | 2026-11-21 |  |  |  |  |  |  |  |  |
| RSZone 3Road 10Potable NetworkA83650 |  | Zone 3 - Road 10 - Potable Water Network - Washout Valve Chambers - Excavation | 6d | 2026-05-06 A | 2026-05-12 A | RSZone 3Road 10Potable NetworkA82900 | 100% |  |  | Contract Price Original Scope [5383.32 SAR]; Labour [45.96 h]; Washout Valve Chambers [4] | 5,383.32 | 5,383.32 | RD10Z3 |
| RSZone 3Road 10Potable NetworkA83660 |  | Zone 3 - Road 10 - Potable Water Network - Washout Valve Chambers - Footings | 5d | 2026-05-13 A | 2026-05-18 A | RSZone 3Road 10Potable NetworkA83650 | 100% |  |  | Contract Price Original Scope [16150 SAR]; Labour [137.88 h]; Washout Valve Chambers [4] | 16,149.95 | 16,149.95 | RD10Z3 |
| RSZone 3Road 10Potable NetworkA83670 |  | Zone 3 - Road 10 - Potable Water Network - Washout Valve Chambers - Walls | 6d | 2026-05-19 A | 2026-05-25 A | RSZone 3Road 10Potable NetworkA83660 | 100% |  |  | Contract Price Original Scope [21533.3 SAR]; Labour [183.84 h]; Washout Valve Chambers [4] | 21,533.26 | 21,533.26 | RD10Z3 |
| RSZone 3Road 10Potable NetworkA83680 |  | Zone 3 - Road 10 - Potable Water Network - Washout Valve Chambers - Slab | 6d | 2026-05-26 A | 2026-06-01 A | RSZone 3Road 10Potable NetworkA83670 | 100% |  |  | Contract Price Original Scope [37683.2 SAR]; Labour [321.72 h]; Washout Valve Chambers [4] | 37,683.21 | 37,683.21 | RD10Z3 |
| RSZone 3Road 10Potable NetworkA83700 |  | Zone 3 - Road 10 - Potable Water Network - Washout Valve Chambers - Internal Isolation | 3d | 2026-11-09 | 2026-11-11 | RSZone 3Road 10Potable NetworkA83680 |  | 90.4d | 0d | Contract Price Original Scope [21533.3 SAR]; Labour [183.84 h]; Washout Valve Chambers [16] | 21,533.26 |  | RD10Z3 |
| RSZone 3Road 10Potable NetworkA83690 |  | Zone 3 - Road 10 - Potable Water Network - Washout Valve Chambers - D.I Cover | 3d | 2026-11-12 | 2026-11-15 | RSZone 3Road 10Potable NetworkA83700 |  | 90.4d | 0d | Contract Price Original Scope [43066.5 SAR]; Labour [367.68 h]; Washout Valve Chambers [16] | 43,066.52 |  | RD10Z3 |
| RSZone 3Road 10Potable NetworkA83710 |  | Zone 3 - Road 10 - Potable Water Network - Washout Valve Chambers - External Isolation | 3d | 2026-11-16 | 2026-11-18 | RSZone 3Road 10Potable NetworkA83690 |  | 90.4d | 0d | Contract Price Original Scope [5383.32 SAR]; Labour [45.96 h]; Washout Valve Chambers [4] | 5,383.32 |  | RD10Z3 |
| RSZone 3Road 10Potable NetworkA83720 |  | Zone 3 - Road 10 - Potable Water Network - Washout Valve Chambers - Backfilling | 2d | 2026-11-19 | 2026-11-21 | RSZone 3Road 10Potable NetworkA83710 |  | 90.4d | 90.2d | Contract Price Original Scope [21533.3 SAR]; Excavator Operator [20 h]; Compactor Operator [20 h]; Dump Truck Operator [20 h]; Water Truck Operator [20 h]; Labour [183.84 h]; Washout Valve Chambers [16] | 21,533.26 |  | RD10Z3 |

| ID | WBS | Activity | Duration | Start | Finish | Predecessors | Complete | Planned start | Planned finish | Total float | Free float | Resources | Cost | Actual cost | MODON |
| --- | --- | --- | --- | --- | --- | --- | --- | --- | --- | --- | --- | --- | --- | --- | --- |
|  | 11 | **Air Valve Chambers** |  | 2026-05-07 | 2026-11-21 |  |  |  |  |  |  |  |  |  |  |
| RSZone 3Road 10Potable NetworkA83810 |  | Zone 3 - Road 10 - Potable Water Network - Air Valve Chambers - Excavation | 6d | 2026-05-07 A | 2026-05-13 A | RSZone 3Road 10Potable NetworkA83680 | 100% | 2026-05-07 | 2026-05-14 |  |  | Contract Price Original Scope [3708.3 SAR]; Labour [31.66 h]; Air Valve Chambers [3] | 3,708.3 | 3,708.3 | RD10Z3 |
| RSZone 3Road 10Potable NetworkA83820 |  | Zone 3 - Road 10 - Potable Water Network - Air Valve Chambers - Footings | 5d | 2026-05-14 A | 2026-05-19 A | RSZone 3Road 10Potable NetworkA83810 | 100% | 2026-05-14 | 2026-05-20 |  |  | Contract Price Original Scope [11124.9 SAR]; Labour [94.98 h]; Air Valve Chambers [3] | 11,124.91 | 11,124.91 | RD10Z3 |
| RSZone 3Road 10Potable NetworkA83830 |  | Zone 3 - Road 10 - Potable Water Network - Air Valve Chambers - Walls | 6d | 2026-05-20 A | 2026-05-26 A | RSZone 3Road 10Potable NetworkA83820 | 100% |  |  |  |  | Contract Price Original Scope [14833.2 SAR]; Labour [126.64 h]; Air Valve Chambers [3] | 14,833.21 | 14,833.21 | RD10Z3 |
| RSZone 3Road 10Potable NetworkA83840 |  | Zone 3 - Road 10 - Potable Water Network - Air Valve Chambers - Slab | 4d | 2026-05-27 A | 2026-05-31 A | RSZone 3Road 10Potable NetworkA83830 | 100% |  |  |  |  | Contract Price Original Scope [25958.1 SAR]; Labour [221.62 h]; Air Valve Chambers [3] | 25,958.12 | 25,958.12 | RD10Z3 |
| RSZone 3Road 10Potable NetworkA83860 |  | Zone 3 - Road 10 - Potable Water Network - Air Valve Chambers - Internal Isolation | 3d | 2026-11-09 | 2026-11-11 | RSZone 3Road 10Potable NetworkA83840 |  |  |  | 90.4d | 0d | Contract Price Original Scope [3708.3 SAR]; Labour [31.66 h]; Air Valve Chambers [3] | 3,708.3 |  | RD10Z3 |
| RSZone 3Road 10Potable NetworkA83850 |  | Zone 3 - Road 10 - Potable Water Network - Air Valve Chambers - D.I Cover | 3d | 2026-11-12 | 2026-11-15 | RSZone 3Road 10Potable NetworkA83860 |  |  |  | 90.4d | 0d | Contract Price Original Scope [7416.61 SAR]; Labour [63.32 h]; Air Valve Chambers [3] | 7,416.61 |  | RD10Z3 |
| RSZone 3Road 10Potable NetworkA83870 |  | Zone 3 - Road 10 - Potable Water Network - Air Valve Chambers - External Isolation | 3d | 2026-11-16 | 2026-11-18 | RSZone 3Road 10Potable NetworkA83850 |  |  |  | 90.4d | 0d | Contract Price Original Scope [3708.3 SAR]; Labour [31.66 h]; Air Valve Chambers [3] | 3,708.3 |  | RD10Z3 |
| RSZone 3Road 10Potable NetworkA83880 |  | Zone 3 - Road 10 - Potable Water Network - Air Valve Chambers - Backfilling | 2d | 2026-11-19 | 2026-11-21 | RSZone 3Road 10Potable NetworkA83870 |  |  |  | 90.4d | 90.2d | Contract Price Original Scope [3708.3 SAR]; Excavator Operator [20 h]; Compactor Operator [20 h]; Dump Truck Operator [20 h]; Water Truck Operator [20 h]; Labour [31.66 h]; Air Valve Chambers [3] | 3,708.3 |  | RD10Z3 |
|  | 6 | **Lateral Irrigation Network** |  | 2026-04-06 | 2027-03-17 |  |  |  |  |  |  |  |  |  |  |
|  | 4 | **End Cap** |  | 2026-06-23 | 2026-11-25 |  |  |  |  |  |  |  |  |  |  |
|  | 1 | **End Cap for Pipe 125 MM** |  | 2026-06-23 | 2026-06-24 |  |  |  |  |  |  |  |  |  |  |
| RSZone 3Road 10Irrigation NetworkA87340 |  | Zone 3 - Road 10 - Lateral Irrigation Network - End Cap for Pipe 125 MM - Installation | 2d | 2026-06-23 A | 2026-06-24 A | RSZone 3Road 07Irrigation NetworkA80000 | 100% |  |  |  |  | Contract Price Original Scope [2241.54 SAR]; Labour [19.14 h]; Fittings - End Caps (all sizes) [6] | 2,241.54 | 2,241.54 | RD10Z3 |
|  | 2 | **End Cap for Pipe 160 MM** |  | 2026-11-22 | 2026-11-25 |  |  |  |  |  |  |  |  |  |  |
| RSZone 3Road 10Irrigation NetworkA87350 |  | Zone 3 - Road 10 - Lateral Irrigation Network - End Cap for Pipe 160 MM - Installation | 3d | 2026-11-22 | 2026-11-25 | RSZone 3Road 07Irrigation NetworkA80800 |  |  |  | 86.5d | 85.86d | Contract Price Original Scope [747.18 SAR]; Labour [6.38 h]; Fittings - End Caps (all sizes) [2] | 747.18 |  | RD10Z3 |
|  | 3 | **Tees** |  | 2026-09-27 | 2026-11-19 |  |  |  |  |  |  |  |  |  |  |
|  | 1 | **Tees for Pipe 125 MM** |  | 2026-09-27 | 2026-11-19 |  |  |  |  |  |  |  |  |  |  |
| RSZone 3Road 10Irrigation NetworkA87360- |  | Zone 3 - Road 10 - Lateral Irrigation Network - Tees for Pipe 125 MM - Installation (old) | 31d | 2026-09-27 A | 2026-11-01 A | RSZone 3Road 10Irrigation NetworkA87340 | 100% |  |  |  |  | Contract Price Original Scope [1536.06 SAR]; Labour [13.11 h]; Fittings - Tees (all sizes) [1] | 1,536.06 | 1,536.06 | RD10Z3 |
| RSZone 3Road 10Irrigation NetworkA87360- |  | Zone 3 - Road 10 - Lateral Irrigation Network - Tees for Pipe 125 MM - Installation (old) | 9.17d | 2026-11-09 | 2026-11-19 | RSZone 3Road 10Irrigation NetworkA87360- |  |  |  | 92.23d | 91.6d | Contract Price Original Scope [16896.7 SAR]; Labour [144.25 h]; Fittings - Tees (all sizes) [11] | 16,896.66 |  | RD10Z3 |
|  | 1 | **Buried Valves** |  | 2026-04-06 | 2026-11-17 |  |  |  |  |  |  |  |  |  |  |
| RSZone 3Road 10Irrigation NetworkA80040 |  | Zone 3 - Road 10 - Lateral Irrigation Network - Buried Valves - Excavation | 3d | 2026-04-06 A | 2026-04-08 A | RSZone 3Road 10Irrigation NetworkA87340 | 100% |  |  |  |  | Contract Price Original Scope [2892.03 SAR]; Excavator Operator [30 h]; Dump Truck Operator [30 h]; Labour [24.69 h]; Buried Valves [43] | 2,892.03 | 2,892.03 | RD10Z3 |
| RSZone 3Road 10Irrigation NetworkA80050 |  | Zone 3 - Road 10 - Lateral Irrigation Network - Buried Valves - Installation | 3d | 2026-04-09 A | 2026-04-12 A | RSZone 3Road 10Irrigation NetworkA80040 | 100% | 2026-04-09 | 2026-04-13 |  |  | Contract Price Original Scope [37596.4 SAR]; Labour [320.98 h]; Buried Valves [43] | 37,596.45 | 37,596.45 | RD10Z3 |
| RSZone 3Road 10Irrigation NetworkA80060 |  | Zone 3 - Road 10 - Lateral Irrigation Network - Buried Valves - Surface Box | 3.1d | 2026-11-09 | 2026-11-12 | RSZone 3Road 10Irrigation NetworkA80050 |  |  |  | 94.3d | 0d | Labour; Buried Valves [43] |  |  | RD10Z3 |
| RSZone 3Road 10Irrigation NetworkA80070 |  | Zone 3 - Road 10 - Lateral Irrigation Network - Buried Valves - Test | 2d | 2026-11-12 | 2026-11-15 | RSZone 3Road 10Irrigation NetworkA80060 |  |  |  | 94.3d | 0d | Contract Price Original Scope [11568.1 SAR]; Pump Operator [20 h]; Equipment Operator [20 h]; Labour [98.76 h]; Buried Valves [43] | 11,568.14 |  | RD10Z3 |
| RSZone 3Road 10Irrigation NetworkA80080 |  | Zone 3 - Road 10 - Lateral Irrigation Network - Buried Valves - Backfilling | 2d | 2026-11-15 | 2026-11-17 | RSZone 3Road 10Irrigation NetworkA80070 |  |  |  | 94.3d | 93.66d | Contract Price Original Scope [5784.07 SAR]; Excavator Operator [20 h]; Compactor Operator [20 h]; Dump Truck Operator [20 h]; Water Truck Operator [20 h]; Labour [49.38 h]; Buried Valves [43] | 5,784.07 |  | RD10Z3 |

| ID | WBS | Activity | Duration | Start | Finish | Predecessors | Complete | Remaining | Planned start | Planned finish | Total float | Free float | Resources | Cost | Actual cost | MODON |
| --- | --- | --- | --- | --- | --- | --- | --- | --- | --- | --- | --- | --- | --- | --- | --- | --- |
|  | 2 | **Air Valves** |  | 2027-02-24 | 2027-03-17 |  |  |  |  |  |  |  |  |  |  |  |
| RSZone 3Road 10Irrigation NetworkA80400 |  | Zone 3 - Road 10 - Lateral Irrigation Network - Air Valves - Installation | 5d | 2027-02-24 | 2027-03-07 | RSZone 3Road 04Irrigation NetworkA79700 |  |  |  |  | 0.64d | 0d | Labour; Washout / Air / FlowMeter Valves [1] |  |  | RD10Z3 |
| RSZone 3Road 10Irrigation NetworkA80410 |  | Zone 3 - Road 10 - Lateral Irrigation Network - Air Valves - Surface Box | 3.2d | 2027-03-07 | 2027-03-14 | RSZone 3Road 10Irrigation NetworkA80400 |  |  |  |  | 0.64d | 0d | Labour; Washout / Air / FlowMeter Valves [1] |  |  | RD10Z3 |
| RSZone 3Road 10Irrigation NetworkA80420 |  | Zone 3 - Road 10 - Lateral Irrigation Network - Air Valves - Test | 2d | 2027-03-14 | 2027-03-17 | RSZone 3Road 10Irrigation NetworkA80410 |  |  |  |  | 0.64d | 0d | Pump Operator [20 h]; Equipment Operator [20 h]; Labour; Washout / Air / FlowMeter Valves [1] |  |  | RD10Z3 |
|  | 5 | **Thrust Block** |  | 2026-09-06 | 2026-11-10 |  |  |  |  |  |  |  |  |  |  |  |
| RSZone 3Road 10Irrigation NetworkA80810- |  | Zone 3 - Road 10 - Lateral Irrigation Network - Thrust Block - Thrust Block (old) | 48d | 2026-09-06 A | 2026-11-01 A | RSZone 3Road 10Irrigation NetworkA80050 | 100% |  |  |  |  |  | Contract Price Original Scope [1021.76 SAR]; Crane Operator [1.08 h]; Pump Operator [1.08 h]; Equipment Operator [1.08 h]; Labour [8.72 h]; Thrust Blocks [1] | 1,021.76 | 1,021.76 | RD10Z3 |
| RSZone 3Road 10Irrigation NetworkA80810- |  | Zone 3 - Road 10 - Lateral Irrigation Network - Thrust Block - Thrust Block (old) | 1.19d | 2026-11-09 | 2026-11-10 | RSZone 3Road 10Irrigation NetworkA80810- |  |  |  |  | 100.21d | 99.57d | Contract Price Original Scope [11239.4 SAR]; Crane Operator [11.92 h]; Pump Operator [11.92 h]; Equipment Operator [11.92 h]; Labour [95.96 h]; Thrust Blocks [11] | 11,239.36 |  | RD10Z3 |
|  | 3 | **Telecom** |  | 2026-06-22 | 2026-12-09 |  |  |  |  |  |  |  |  |  |  |  |
|  | 1 | **Telecom Pipe** |  | 2026-09-20 | 2026-11-18 |  |  |  |  |  |  |  |  |  |  |  |
| RSZone 3Road 10Telecom NetworkA87250-old |  | Zone 3 - Road 10 - Telecom Network - Telecom Pipe - Excavation (old) | 36d | 2026-09-20 A | 2026-11-01 A | RSZone 3Road 07Telecom NetworkA87080-old | 100% |  |  |  |  |  | Contract Price Original Scope [20308 SAR]; Excavator Operator [4.83 h]; Dump Truck Operator [4.83 h]; Labour [173.38 h]; Telecom Pipe [942.34] | 20,308.03 | 20,308.03 | RD10Z3 |
| RSZone 3Road 10Telecom NetworkA87260-old |  | Zone 3 - Road 10 - Telecom Network - Telecom Pipe - Concrete Pouring (old) | 34d | 2026-09-22 A | 2026-11-01 A | RSZone 3Road 10Telecom NetworkA87250-old | 100% |  |  |  |  |  | Contract Price Original Scope [142533 SAR]; Crane Operator [2.1 h]; Pump Operator [2.1 h]; Equipment Operator [2.1 h]; Labour [1216.88 h]; Telecom Pipe [944.84] | 142,533.28 | 142,533.28 | RD10Z3 |
| RSZone 3Road 10Telecom NetworkA87280-old |  | Zone 3 - Road 10 - Telecom Network - Telecom Pipe - Backfilling (old) | 33d | 2026-09-23 A | 2026-11-01 A | RSZone 3Road 10Telecom NetworkA87260-old | 100% |  | 2026-09-24 | 2026-11-02 |  |  | Contract Price Original Scope [20273 SAR]; Excavator Operator [3.22 h]; Compactor Operator [3.22 h]; Dump Truck Operator [3.22 h]; Water Truck Operator [3.22 h]; Labour [173.08 h]; Telecom Pipe [940.71] | 20,273.02 | 20,273.02 | RD10Z3 |
| RSZone 3Road 10Telecom NetworkA87270 |  | Zone 3 - Road 10 - Telecom Network - Telecom Pipe - Test | 2d | 2026-11-07 A | 2026-11-18 | RSZone 3Road 10Telecom NetworkA87280 FF, RSZone 3Road 10Telecom NetworkA87260 FF, RSZone 3Road 10Telecom NetworkA87280-old | 11% | 1.78d | 2026-11-11 | 2026-11-14 | 98.19d | 97.79d | Contract Price Original Scope [126050 SAR]; Pump Operator [20 h]; Equipment Operator [20 h]; Labour [1076.15 h]; Telecom Pipe [5849] | 126,049.84 | 13,865.48 | RD10Z3 |
| RSZone 3Road 10Telecom NetworkA87250 |  | Zone 3 - Road 10 - Telecom Network - Telecom Pipe - Excavation | 2.52d | 2026-11-11 | 2026-11-15 | RSZone 3Road 10Telecom NetworkA87250-old, RSZone 3Road 07Telecom NetworkA87080 |  |  |  |  | 98.19d | 0d | Contract Price Original Scope [105742 SAR]; Excavator Operator [25.17 h]; Dump Truck Operator [25.17 h]; Labour [902.77 h]; Telecom Pipe [4906.66] | 105,741.81 |  | RD10Z3 |
| RSZone 3Road 10Telecom NetworkA87260 |  | Zone 3 - Road 10 - Telecom Network - Telecom Pipe - Concrete Pouring | 1.09d | 2026-11-15 | 2026-11-16 | RSZone 3Road 10Telecom NetworkA87260-old, RSZone 3Road 10Telecom NetworkA87250 |  |  |  |  | 98.19d | 0d | Contract Price Original Scope [739816 SAR]; Crane Operator [10.9 h]; Pump Operator [10.9 h]; Equipment Operator [10.9 h]; Labour [6316.16 h]; Telecom Pipe [4904.16] | 739,815.6 |  | RD10Z3 |
| RSZone 3Road 10Telecom NetworkA87280 |  | Zone 3 - Road 10 - Telecom Network - Telecom Pipe - Backfilling | 1.68d | 2026-11-16 | 2026-11-18 | RSZone 3Road 10Telecom NetworkA87280-old, RSZone 3Road 10Telecom NetworkA87260 |  |  |  |  | 98.19d | 0d | Contract Price Original Scope [105777 SAR]; Excavator Operator [16.78 h]; Compactor Operator [16.78 h]; Dump Truck Operator [16.78 h]; Water Truck Operator [16.78 h]; Labour [903.07 h]; Telecom Pipe [4908.29] | 105,776.82 |  | RD10Z3 |
|  | 12 | **Telecom Duct** |  | 2026-06-22 | 2026-11-12 |  |  |  |  |  |  |  |  |  |  |  |
| RSZone 3Road 10Telecom NetworkA87290 |  | Zone 3 - Road 10 - Telecom Network - Telecom Duct - Excavation | 6d | 2026-06-22 A | 2026-06-28 A | RSZone 3Road 06Telecom NetworkA87000 | 100% |  |  |  |  |  | Contract Price Original Scope [5442.18 SAR]; Excavator Operator [30 h]; Dump Truck Operator [30 h]; Labour [46.46 h]; Telecom Duct (Road Crossing) [250] | 5,442.18 | 5,442.18 | RD10Z3 |
| RSZone 3Road 10Telecom NetworkA87300 |  | Zone 3 - Road 10 - Telecom Network - Telecom Duct - Concrete Pouring | 3d | 2026-06-29 A | 2026-07-01 A | RSZone 3Road 10Telecom NetworkA87290, RSZone 3Road 10Telecom NetworkA87290 FF | 100% |  |  |  |  |  | Contract Price Original Scope [76190.5 SAR]; Crane Operator [12 h]; Pump Operator [12 h]; Equipment Operator [12 h]; Labour [650.48 h]; Telecom Duct (Road Crossing) [250] | 76,190.54 | 76,190.54 | RD10Z3 |
| RSZone 3Road 10Telecom NetworkA87310 |  | Zone 3 - Road 10 - Telecom Network - Telecom Duct - Test | 2d | 2026-11-09 | 2026-11-10 | RSZone 3Road 10Telecom NetworkA87300 |  |  |  |  | 102.4d | 0d | Contract Price Original Scope [10884.4 SAR]; Pump Operator [20 h]; Equipment Operator [20 h]; Labour [92.93 h]; Telecom Duct (Road Crossing) [250] | 10,884.36 |  | RD10Z3 |
| RSZone 3Road 10Telecom NetworkA87320 |  | Zone 3 - Road 10 - Telecom Network - Telecom Duct - Backfilling | 2d | 2026-11-11 | 2026-11-12 | RSZone 3Road 10Telecom NetworkA87310 |  |  |  |  | 102.4d | 102d | Contract Price Original Scope [16326.5 SAR]; Excavator Operator [20 h]; Compactor Operator [20 h]; Dump Truck Operator [20 h]; Water Truck Operator [20 h]; Labour [139.39 h]; Telecom Duct (Road Crossing) [250] | 16,326.54 |  | RD10Z3 |
|  | 2 | **TELECOM MANHOLE** |  | 2026-09-30 | 2026-12-09 |  |  |  |  |  |  |  |  |  |  |  |
| RSZone 3Road 10Telecom NetworkA87330-old |  | Zone 3 - Road 10 - Telecom Network - TELECOM MANHOLE - Manhole Installation (old) | 28d | 2026-09-30 A | 2026-11-01 A | RSZone 3Road 07Telecom NetworkA87160-old | 100% |  |  |  |  |  | Contract Price Original Scope [313669 SAR]; Crane Operator [11.4 h]; Boom Truck Operator [11.4 h]; Equipment Operator [11.4 h]; Labour [2677.94 h]; Telecom Manhole [20.9] | 313,668.66 | 313,668.66 | RD10Z3 |
| RSZone 3Road 10Telecom NetworkA87330 |  | Zone 3 - Road 10 - Telecom Network - TELECOM MANHOLE - Manhole Installation | 1d | 2026-12-09 | 2026-12-09 | RSZone 3Road 10Telecom NetworkA87330-old, RSZone 3Road 07Telecom NetworkA87160 |  |  |  |  | 76.4d | 0d | Contract Price Original Scope [16508.9 SAR]; Crane Operator [0.6 h]; Boom Truck Operator [0.6 h]; Equipment Operator [0.6 h]; Labour [140.94 h]; Telecom Manhole [1.1] | 16,508.88 |  | RD10Z3 |

| ID | WBS | Activity | Duration | Start | Finish | Predecessors | Complete | Planned start | Planned finish | Total float | Free float | Resources | Cost | Actual cost | MODON |
| --- | --- | --- | --- | --- | --- | --- | --- | --- | --- | --- | --- | --- | --- | --- | --- |
|  | 17 | **Road 21** |  | 2026-04-08 | 2027-04-03 |  |  |  |  |  |  |  |  |  |  |
|  | 5 | **Sewage Network** |  | 2026-08-23 | 2026-09-06 |  |  |  |  |  |  |  |  |  |  |
|  | 2 | **UPVC Pipes 150 MM** |  | 2026-08-24 | 2026-09-03 |  |  |  |  |  |  |  |  |  |  |
| RSZone 3Road 21Sewage NetworkA94380 |  | Zone 3 - Road 21 - Sewage Network - UPVC Pipes 150 MM - Excavation | 3.9d | 2026-08-24 A | 2026-08-27 A | RSZone 3Road 06Sewage NetworkA87070 | 100% |  |  |  |  | Contract Price Original Scope [1124.03 SAR]; Excavator Operator [30 h]; Dump Truck Operator [30 h]; Labour [9.6 h]; UPVC Pipes 150 MM [36] | 1,124.03 | 1,124.03 | RD21 |
| RSZone 3Road 21Sewage NetworkA94390 |  | Zone 3 - Road 21 - Sewage Network - UPVC Pipes 150 MM - Installation | 2d | 2026-08-30 A | 2026-08-31 A | RSZone 3Road 21Sewage NetworkA94380 | 100% |  |  |  |  | Contract Price Original Scope [749.35 SAR]; Excavator Operator [5 h]; Crane Operator [5 h]; Equipment Operator [5 h]; Labour [6.4 h]; UPVC Pipes 150 MM [36] | 749.35 | 749.35 | RD21 |
| RSZone 3Road 21Sewage NetworkA94400 |  | Zone 3 - Road 21 - Sewage Network - UPVC Pipes 150 MM - Test | 2d | 2026-08-31 A | 2026-09-01 A | RSZone 3Road 21Sewage NetworkA94390 | 100% |  |  |  |  | Contract Price Original Scope [749.35 SAR]; Pump Operator [20 h]; Equipment Operator [20 h]; Labour [6.4 h]; UPVC Pipes 150 MM [36] | 749.35 | 749.35 | RD21 |
| RSZone 3Road 21Sewage NetworkA94410 |  | Zone 3 - Road 21 - Sewage Network - UPVC Pipes 150 MM - Backfilling | 2.9d | 2026-09-01 A | 2026-09-03 A | RSZone 3Road 21Sewage NetworkA94400 | 100% |  |  |  |  | Contract Price Original Scope [4870.78 SAR]; Excavator Operator [20 h]; Compactor Operator [20 h]; Dump Truck Operator [20 h]; Water Truck Operator [20 h]; Labour [41.58 h]; UPVC Pipes 150 MM [36] | 4,870.78 | 4,870.78 | RD21 |
|  | 1 | **UPVC Pipes 200 MM** |  | 2026-08-23 | 2026-09-06 |  |  |  |  |  |  |  |  |  |  |
| RSZone 3Road 21Sewage NetworkA94340 |  | Zone 3 - Road 21 - Sewage Network - UPVC Pipes 200 MM - Excavation | 4.9d | 2026-08-23 A | 2026-08-27 A | RSZone 3Road 21Sewage NetworkA94410 | 100% |  |  |  |  | Contract Price Original Scope [1265.3 SAR]; Excavator Operator [30 h]; Dump Truck Operator [30 h]; Labour [10.8 h]; UPVC Pipes 200 MM [16.5] | 1,265.3 | 1,265.3 | RD21 |
| RSZone 3Road 21Sewage NetworkA94350 |  | Zone 3 - Road 21 - Sewage Network - UPVC Pipes 200 MM - Installation | 3d | 2026-08-30 A | 2026-09-01 A | RSZone 3Road 21Sewage NetworkA94340 | 100% |  |  |  |  | Contract Price Original Scope [843.54 SAR]; Excavator Operator [5 h]; Crane Operator [5 h]; Equipment Operator [5 h]; Labour [7.2 h]; UPVC Pipes 200 MM [16.5] | 843.54 | 843.54 | RD21 |
| RSZone 3Road 21Sewage NetworkA94360 |  | Zone 3 - Road 21 - Sewage Network - UPVC Pipes 200 MM - Test | 1.9d | 2026-09-02 A | 2026-09-03 A | RSZone 3Road 21Sewage NetworkA94350 | 100% |  |  |  |  | Contract Price Original Scope [843.54 SAR]; Pump Operator [20 h]; Equipment Operator [20 h]; Labour [7.2 h]; UPVC Pipes 200 MM [16.5] | 843.54 | 843.54 | RD21 |
| RSZone 3Road 21Sewage NetworkA94370 |  | Zone 3 - Road 21 - Sewage Network - UPVC Pipes 200 MM - Backfilling | 3d | 2026-09-03 A | 2026-09-06 A | RSZone 3Road 21Sewage NetworkA94360 | 100% | 2026-09-03 | 2026-09-07 |  |  | Contract Price Original Scope [5482.98 SAR]; Excavator Operator [20 h]; Compactor Operator [20 h]; Dump Truck Operator [20 h]; Water Truck Operator [20 h]; Labour [46.81 h]; UPVC Pipes 200 MM [16.5] | 5,482.98 | 5,482.98 | RD21 |
|  | 4 | **Storm Network** |  | 2026-06-30 | 2027-04-03 |  |  |  |  |  |  |  |  |  |  |
|  | 1 | **Perforated 160 mm** |  | 2026-06-30 | 2026-11-10 |  |  |  |  |  |  |  |  |  |  |
| RSZone 3Road 21Storm NetworkA87760 |  | Zone 3 - Road 21 - Storm Network - Perforated 160 mm - Excavation | 6d | 2026-06-30 A | 2026-07-06 A | RSZone 3Road 10Storm NetworkA87510 | 100% |  |  |  |  | Contract Price Original Scope [3452.36 SAR]; Excavator Operator [30 h]; Dump Truck Operator [30 h]; Labour [29.47 h]; Perforated 160 mm [216] | 3,452.36 | 3,452.36 | RD21 |
| RSZone 3Road 21Storm NetworkA87770 |  | Zone 3 - Road 21 - Storm Network - Perforated 160 mm - Bedding | 2d | 2026-07-07 A | 2026-07-08 A | RSZone 3Road 21Storm NetworkA87760 | 100% |  |  |  |  | Contract Price Original Scope [1726.18 SAR]; Compactor Operator [20 h]; Equipment Operator [20 h]; Water Truck Operator [20 h]; Labour [14.74 h]; Perforated 160 mm [216] | 1,726.18 | 1,726.18 | RD21 |
| RSZone 3Road 21Storm NetworkA87780 |  | Zone 3 - Road 21 - Storm Network - Perforated 160 mm - Pipe Installation | 4d | 2026-07-09 A | 2026-07-13 A | RSZone 3Road 21Storm NetworkA87770 | 100% | 2026-07-09 | 2026-07-14 |  |  | Contract Price Original Scope [22440.4 SAR]; Excavator Operator [40 h]; Crane Operator [40 h]; Equipment Operator [40 h]; Labour [191.58 h]; Perforated 160 mm [216] | 22,440.36 | 22,440.36 | RD21 |
| RSZone 3Road 21Storm NetworkA87800 |  | Zone 3 - Road 21 - Storm Network - Perforated 160 mm - Backfilling | 5d | 2026-07-14 A | 2026-07-19 A | RSZone 3Road 21Storm NetworkA87780 | 100% |  |  |  |  | Contract Price Original Scope [3452.36 SAR]; Excavator Operator [20 h]; Compactor Operator [20 h]; Dump Truck Operator [20 h]; Water Truck Operator [20 h]; Labour [29.47 h]; Perforated 160 mm [216] | 3,452.36 | 3,452.36 | RD21 |
| RSZone 3Road 21Storm NetworkA87790 |  | Zone 3 - Road 21 - Storm Network - Perforated 160 mm - Test | 2d | 2026-11-09 | 2026-11-10 | RSZone 3Road 21Storm NetworkA87800 |  |  |  | 123.4d | 109d | Contract Price Original Scope [3452.36 SAR]; Pump Operator [20 h]; Equipment Operator [20 h]; Labour [29.47 h]; Perforated 160 mm [216] | 3,452.36 |  | RD21 |
|  | 3 | **Gravel and Geotextile** |  | 2026-07-02 | 2026-07-05 |  |  |  |  |  |  |  |  |  |  |
| RSZone 3Road 21Storm NetworkA87810 |  | Zone 3 - Road 21 - Storm Network - Gravel and Geotextile - Installation | 3d | 2026-07-02 A | 2026-07-05 A | RSZone 3Road 21Storm NetworkA87800 | 100% | 2026-07-02 | 2026-07-06 |  |  | Contract Price Original Scope [25336.4 SAR]; Excavator Operator [8 h]; Dump Truck Operator [8 h]; Equipment Operator [8 h]; Water Truck Operator [8 h]; Labour [216.31 h]; Gravel and Geotextile [216] | 25,336.43 | 25,336.43 | RD21 |
|  | 4 | **Concrete Manholes on Box Culvert** |  | 2027-02-27 | 2027-04-03 |  |  |  |  |  |  |  |  |  |  |
| RSZone 3Road 21Storm NetworkA95550 |  | Zone 3 - Road 21 - Storm Network - Concrete Manholes on Box Culvert - Excavation | 3d | 2027-02-27 | 2027-03-03 | RSZone 3Road 10Storm NetworkA95480 SS |  |  |  | 14.4d | 0d | Contract Price Original Scope [5866.74 SAR]; Labour [50.09 h]; Concrete Manholes on Box Culvert - Manhole with a depth of 2.0-2.5 m [9] | 5,866.74 |  | RD21 |
| RSZone 3Road 21Storm NetworkA95570 |  | Zone 3 - Road 21 - Storm Network - Concrete Manholes on Box Culvert - Slab | 3d | 2027-03-04 | 2027-03-10 | RSZone 3Road 21Storm NetworkA95550 |  |  |  | 14.4d | 0d | Contract Price Original Scope [41067.2 SAR]; Labour [350.61 h]; Concrete Manholes on Box Culvert - Manhole with a depth of 2.0-2.5 m [9] | 41,067.19 |  | RD21 |
| RSZone 3Road 21Storm NetworkA95560 |  | Zone 3 - Road 21 - Storm Network - Concrete Manholes on Box Culvert - Walls | 3d | 2027-03-10 | 2027-03-16 | RSZone 3Road 21Storm NetworkA95570 |  |  |  | 14.4d | 0d | Contract Price Original Scope [23467 SAR]; Labour [200.35 h]; Concrete Manholes on Box Culvert - Manhole with a depth of 2.0-2.5 m [9] | 23,466.96 |  | RD21 |
| RSZone 3Road 21Storm NetworkA95590 |  | Zone 3 - Road 21 - Storm Network - Concrete Manholes on Box Culvert - Internal Isolation | 3d | 2027-03-16 | 2027-03-24 | RSZone 3Road 21Storm NetworkA95560 |  |  |  | 14.4d | 0d | Contract Price Original Scope [5866.74 SAR]; Labour [50.09 h]; Concrete Manholes on Box Culvert - Manhole with a depth of 2.0-2.5 m [9] | 5,866.74 |  | RD21 |
| RSZone 3Road 21Storm NetworkA95580 |  | Zone 3 - Road 21 - Storm Network - Concrete Manholes on Box Culvert - D.I Cover | 3d | 2027-03-24 | 2027-03-28 | RSZone 3Road 21Storm NetworkA95590 |  |  |  | 14.4d | 0d | Contract Price Original Scope [11733.5 SAR]; Labour [100.17 h]; Concrete Manholes on Box Culvert - Manhole with a depth of 2.0-2.5 m [35] | 11,733.48 |  | RD21 |
| RSZone 3Road 21Storm NetworkA95600 |  | Zone 3 - Road 21 - Storm Network - Concrete Manholes on Box Culvert - External Isolation | 3d | 2027-03-28 | 2027-03-31 | RSZone 3Road 21Storm NetworkA95580 |  |  |  | 14.4d | 0d | Contract Price Original Scope [5866.74 SAR]; Labour [50.09 h]; Concrete Manholes on Box Culvert - Manhole with a depth of 2.0-2.5 m [9] | 5,866.74 |  | RD21 |
| RSZone 3Road 21Storm NetworkA95610 |  | Zone 3 - Road 21 - Storm Network - Concrete Manholes on Box Culvert - Backfilling | 2d | 2027-03-31 | 2027-04-03 | RSZone 3Road 21Storm NetworkA95600 |  |  |  | 14.4d | 0d | Contract Price Original Scope [5866.74 SAR]; Excavator Operator [20 h]; Compactor Operator [20 h]; Dump Truck Operator [20 h]; Water Truck Operator [20 h]; Labour [50.09 h]; Concrete Manholes on Box Culvert - Manhole with a depth of 2.0-2.5 m [9] | 5,866.74 |  | RD21 |

| ID | WBS | Activity | Duration | Start | Finish | Predecessors | Complete | Total float | Free float | Resources | Cost | Actual cost | MODON |
| --- | --- | --- | --- | --- | --- | --- | --- | --- | --- | --- | --- | --- | --- |
|  | 3 | **Potable Water Network** |  | 2026-05-03 | 2026-11-19 |  |  |  |  |  |  |  |  |
|  | 1 | **Buried Valves** |  | 2026-05-03 | 2026-11-16 |  |  |  |  |  |  |  |  |
| RSZone 3Road 21Potable NetworkA82940 |  | Zone 3 - Road 21 - Potable Water Network - Buried Valves - Excavation | 4.9d | 2026-05-03 A | 2026-05-07 A | RSZone 3Road 10Potable NetworkA83840 | 100% |  |  | Contract Price Original Scope [480.57 SAR]; Excavator Operator [30 h]; Dump Truck Operator [30 h]; Labour [4.1 h]; Buried Valves [3] | 480.57 | 480.57 | RD21 |
| RSZone 3Road 21Potable NetworkA82950 |  | Zone 3 - Road 21 - Potable Water Network - Buried Valves - Installation | 2d | 2026-05-10 A | 2026-05-11 A | RSZone 3Road 21Potable NetworkA82940 | 100% |  |  | Contract Price Original Scope [6247.4 SAR]; Labour [53.34 h]; Buried Valves [3] | 6,247.4 | 6,247.4 | RD21 |
| RSZone 3Road 21Potable NetworkA82960 |  | Zone 3 - Road 21 - Potable Water Network - Buried Valves - Surface Box | 3d | 2026-11-09 | 2026-11-11 | RSZone 3Road 21Potable NetworkA82950 |  | 94.4d | 0d | Labour; Buried Valves [3] |  |  | RD21 |
| RSZone 3Road 21Potable NetworkA82970 |  | Zone 3 - Road 21 - Potable Water Network - Buried Valves - Test | 2d | 2026-11-12 | 2026-11-14 | RSZone 3Road 21Potable NetworkA82960 |  | 94.4d | 0d | Contract Price Original Scope [1922.28 SAR]; Pump Operator [20 h]; Equipment Operator [20 h]; Labour [16.41 h]; Buried Valves [3] | 1,922.28 |  | RD21 |
| RSZone 3Road 21Potable NetworkA82980 |  | Zone 3 - Road 21 - Potable Water Network - Buried Valves - Backfilling | 2d | 2026-11-15 | 2026-11-16 | RSZone 3Road 21Potable NetworkA82970 |  | 94.4d | 94.2d | Contract Price Original Scope [961.14 SAR]; Excavator Operator [20 h]; Compactor Operator [20 h]; Dump Truck Operator [20 h]; Water Truck Operator [20 h]; Labour [8.21 h]; Buried Valves [3] | 961.14 |  | RD21 |
|  | 7 | **FIRE HYDRANT** |  | 2026-09-06 | 2026-11-19 |  |  |  |  |  |  |  |  |
| RSZone 3Road 21Potable NetworkA84190-old |  | Zone 3 - Road 21 - Potable Water Network - FIRE HYDRANT - Excavation (old) | 48d | 2026-09-06 A | 2026-11-01 A | RSZone 3Road 21Potable NetworkA82940 | 100% |  |  | Contract Price Original Scope [4161.85 SAR]; Excavator Operator [22.5 h]; Dump Truck Operator [22.5 h]; Labour [35.53 h]; Fire Hydrant [3] | 4,161.85 | 4,161.85 | RD21 |
| RSZone 3Road 21Potable NetworkA84200-old |  | Zone 3 - Road 21 - Potable Water Network - FIRE HYDRANT - Buried Gate Valve Installation (old) | 47d | 2026-09-07 A | 2026-11-01 A | RSZone 3Road 21Potable NetworkA84190-old | 100% |  |  | Labour; Fire Hydrant [3] |  |  | RD21 |
| RSZone 3Road 21Potable NetworkA84210-old |  | Zone 3 - Road 21 - Potable Water Network - FIRE HYDRANT - Fire Hydrant Installation (old) | 46d | 2026-09-08 A | 2026-11-01 A | RSZone 3Road 21Potable NetworkA84200-old | 100% |  |  | Contract Price Original Scope [30381.5 SAR]; Labour [259.38 h]; Fire Hydrant [3] | 30,381.48 | 30,381.48 | RD21 |
| RSZone 3Road 21Potable NetworkA84190 |  | Zone 3 - Road 21 - Potable Water Network - FIRE HYDRANT - Excavation | 1d | 2026-11-09 | 2026-11-09 | RSZone 3Road 21Potable NetworkA84190-old |  | 91.4d | 0d | Contract Price Original Scope [1387.28 SAR]; Excavator Operator [7.5 h]; Dump Truck Operator [7.5 h]; Labour [11.84 h]; Fire Hydrant [1] | 1,387.28 |  | RD21 |
| RSZone 3Road 21Potable NetworkA84200 |  | Zone 3 - Road 21 - Potable Water Network - FIRE HYDRANT - Buried Gate Valve Installation | 1d | 2026-11-10 | 2026-11-10 | RSZone 3Road 21Potable NetworkA84200-old, RSZone 3Road 21Potable NetworkA84190 |  | 91.4d | 0d | Labour; Fire Hydrant [1] |  |  | RD21 |
| RSZone 3Road 21Potable NetworkA84210 |  | Zone 3 - Road 21 - Potable Water Network - FIRE HYDRANT - Fire Hydrant Installation | 1d | 2026-11-11 | 2026-11-11 | RSZone 3Road 21Potable NetworkA84210-old, RSZone 3Road 21Potable NetworkA84200 |  | 91.4d | 0d | Contract Price Original Scope [10127.2 SAR]; Labour [86.46 h]; Fire Hydrant [1] | 10,127.16 |  | RD21 |
| RSZone 3Road 21Potable NetworkA84220 |  | Zone 3 - Road 21 - Potable Water Network - FIRE HYDRANT - Surface Box | 3d | 2026-11-12 | 2026-11-15 | RSZone 3Road 21Potable NetworkA84210, RSZone 3Road 21Potable NetworkA84190, RSZone 3Road 21Potable NetworkA84200 |  | 91.4d | 0d | Labour; Fire Hydrant [4] |  |  | RD21 |
| RSZone 3Road 21Potable NetworkA84230 |  | Zone 3 - Road 21 - Potable Water Network - FIRE HYDRANT - Test | 2d | 2026-11-16 | 2026-11-17 | RSZone 3Road 21Potable NetworkA84220 |  | 91.4d | 0d | Contract Price Original Scope [3884.39 SAR]; Pump Operator [20 h]; Equipment Operator [20 h]; Labour [33.16 h]; Fire Hydrant [4] | 3,884.39 |  | RD21 |
| RSZone 3Road 21Potable NetworkA84240 |  | Zone 3 - Road 21 - Potable Water Network - FIRE HYDRANT - Backfilling | 2d | 2026-11-18 | 2026-11-19 | RSZone 3Road 21Potable NetworkA84230 |  | 91.4d | 91.2d | Contract Price Original Scope [5549.13 SAR]; Excavator Operator [20 h]; Compactor Operator [20 h]; Dump Truck Operator [20 h]; Water Truck Operator [20 h]; Labour [47.38 h]; Fire Hydrant [4] | 5,549.13 |  | RD21 |
|  | 2 | **Lateral Irrigation Network** |  | 2026-04-08 | 2026-12-13 |  |  |  |  |  |  |  |  |
|  | 1 | **Buried Valves** |  | 2026-04-08 | 2026-12-13 |  |  |  |  |  |  |  |  |
| RSZone 3Road 21Irrigation NetworkA80090 |  | Zone 3 - Road 21 - Lateral Irrigation Network - Buried Valves - Excavation | 5d | 2026-04-08 A | 2026-04-13 A | RSZone 3Road 10Irrigation NetworkA80050 | 100% |  |  | Contract Price Original Scope [336.28 SAR]; Excavator Operator [30 h]; Dump Truck Operator [30 h]; Labour [2.87 h]; Buried Valves [5] | 336.28 | 336.28 | RD21 |
| RSZone 3Road 21Irrigation NetworkA80100 |  | Zone 3 - Road 21 - Lateral Irrigation Network - Buried Valves - Installation | 2d | 2026-04-14 A | 2026-04-15 A | RSZone 3Road 21Irrigation NetworkA80090 | 100% |  |  | Contract Price Original Scope [4371.68 SAR]; Labour [37.32 h]; Buried Valves [5] | 4,371.68 | 4,371.68 | RD21 |
| RSZone 3Road 21Irrigation NetworkA80110 |  | Zone 3 - Road 21 - Lateral Irrigation Network - Buried Valves - Surface Box | 10d | 2026-11-09 | 2026-11-19 | RSZone 3Road 21Irrigation NetworkA80100 |  | 71.4d | 0d | Labour; Buried Valves [5] |  |  | RD21 |
| RSZone 3Road 21Irrigation NetworkA80120 |  | Zone 3 - Road 21 - Lateral Irrigation Network - Buried Valves - Test | 10d | 2026-11-21 | 2026-12-01 | RSZone 3Road 21Irrigation NetworkA80110 |  | 71.4d | 0d | Contract Price Original Scope [1345.13 SAR]; Pump Operator [20 h]; Equipment Operator [20 h]; Labour [11.48 h]; Buried Valves [5] | 1,345.13 |  | RD21 |
| RSZone 3Road 21Irrigation NetworkA80130 |  | Zone 3 - Road 21 - Lateral Irrigation Network - Buried Valves - Backfilling | 10d | 2026-12-02 | 2026-12-13 | RSZone 3Road 21Irrigation NetworkA80120 |  | 71.4d | 70.76d | Contract Price Original Scope [672.57 SAR]; Excavator Operator [20 h]; Compactor Operator [20 h]; Dump Truck Operator [20 h]; Water Truck Operator [20 h]; Labour [5.74 h]; Buried Valves [5] | 672.57 |  | RD21 |

| ID | WBS | Activity | Duration | Start | Finish | Predecessors | Complete | Planned start | Planned finish | Total float | Free float | Resources | Cost | Actual cost | MODON |
| --- | --- | --- | --- | --- | --- | --- | --- | --- | --- | --- | --- | --- | --- | --- | --- |
|  | 1 | **Telecom** |  | 2026-10-01 | 2027-03-06 |  |  |  |  |  |  |  |  |  |  |
|  | 1 | **Telecom Pipe** |  | 2027-02-11 | 2027-03-06 |  |  |  |  |  |  |  |  |  |  |
| RSZone 3Road 21Telecom NetworkA87670 |  | Zone 3 - Road 21 - Telecom Network - Telecom Pipe - Excavation | 5d | 2027-02-11 | 2027-02-16 | RSZone 2Road 20Telecom NetworkA86400 |  |  |  | 0.4d | 0d | Contract Price Original Scope [6853.11 SAR]; Excavator Operator [30 h]; Dump Truck Operator [30 h]; Labour [58.51 h]; Telecom Pipe [318] | 6,853.11 |  | RD21 |
| RSZone 3Road 21Telecom NetworkA87680 |  | Zone 3 - Road 21 - Telecom Network - Telecom Pipe - Concrete Pouring | 5d | 2027-02-17 | 2027-02-25 | RSZone 3Road 21Telecom NetworkA87670 |  |  |  | 11.4d | 0d | Contract Price Original Scope [47971.8 SAR]; Crane Operator [13 h]; Pump Operator [13 h]; Equipment Operator [13 h]; Labour [409.56 h]; Telecom Pipe [318] | 47,971.78 |  | RD21 |
| RSZone 3Road 21Telecom NetworkA87690 |  | Zone 3 - Road 21 - Telecom Network - Telecom Pipe - Test | 2d | 2027-02-27 | 2027-03-02 | RSZone 3Road 21Telecom NetworkA87680 |  |  |  | 11.4d | 0d | Contract Price Original Scope [6853.11 SAR]; Pump Operator [20 h]; Equipment Operator [20 h]; Labour [58.51 h]; Telecom Pipe [318] | 6,853.11 |  | RD21 |
| RSZone 3Road 21Telecom NetworkA87700 |  | Zone 3 - Road 21 - Telecom Network - Telecom Pipe - Backfilling | 2d | 2027-03-02 | 2027-03-06 | RSZone 3Road 21Telecom NetworkA87690 |  |  |  | 11.4d | 11d | Contract Price Original Scope [6853.11 SAR]; Excavator Operator [20 h]; Compactor Operator [20 h]; Dump Truck Operator [20 h]; Water Truck Operator [20 h]; Labour [58.51 h]; Telecom Pipe [318] | 6,853.11 |  | RD21 |
|  | 2 | **TELECOM MANHOLE** |  | 2026-10-01 | 2026-12-10 |  |  |  |  |  |  |  |  |  |  |
| RSZone 3Road 21Telecom NetworkA87750-old |  | Zone 3 - Road 21 - Telecom Network - TELECOM MANHOLE - Manhole Installation (old) | 27d | 2026-10-01 A | 2026-11-01 A | RSZone 3Road 10Telecom NetworkA87330-old | 100% | 2026-10-01 | 2026-11-02 |  |  | Contract Price Original Scope [57030.7 SAR]; Crane Operator [11.4 h]; Boom Truck Operator [11.4 h]; Equipment Operator [11.4 h]; Labour [486.9 h]; Telecom Manhole [3.8] | 57,030.67 | 57,030.67 | RD21 |
| RSZone 3Road 21Telecom NetworkA87750 |  | Zone 3 - Road 21 - Telecom Network - TELECOM MANHOLE - Manhole Installation | 1d | 2026-12-10 | 2026-12-10 | RSZone 3Road 21Telecom NetworkA87750-old, RSZone 3Road 10Telecom NetworkA87330 |  |  |  | 76.4d | 0d | Contract Price Original Scope [3001.61 SAR]; Crane Operator [0.6 h]; Boom Truck Operator [0.6 h]; Equipment Operator [0.6 h]; Labour [25.63 h]; Telecom Manhole [0.2] | 3,001.61 |  | RD21 |
|  | 18 | **Road 22** |  | 2026-04-09 | 2027-04-03 |  |  |  |  |  |  |  |  |  |  |
|  | 4 | **Storm Network** |  | 2026-07-05 | 2027-04-03 |  |  |  |  |  |  |  |  |  |  |
|  | 1 | **Perforated 160 mm** |  | 2026-07-05 | 2026-11-10 |  |  |  |  |  |  |  |  |  |  |
| RSZone 3Road 22Storm NetworkA87910 |  | Zone 3 - Road 22 - Storm Network - Perforated 160 mm - Excavation | 4.9d | 2026-07-05 A | 2026-07-09 A | RSZone 3Road 21Storm NetworkA87810 | 100% |  |  |  |  | Contract Price Original Scope [4938.8 SAR]; Excavator Operator [30 h]; Dump Truck Operator [30 h]; Labour [42.16 h]; Perforated 160 mm [309] | 4,938.8 | 4,938.8 | RD22 |
| RSZone 3Road 22Storm NetworkA87920 |  | Zone 3 - Road 22 - Storm Network - Perforated 160 mm - Bedding | 2d | 2026-07-12 A | 2026-07-13 A | RSZone 3Road 22Storm NetworkA87910 | 100% |  |  |  |  | Contract Price Original Scope [2469.4 SAR]; Compactor Operator [20 h]; Equipment Operator [20 h]; Water Truck Operator [20 h]; Labour [21.08 h]; Perforated 160 mm [309] | 2,469.4 | 2,469.4 | RD22 |
| RSZone 3Road 22Storm NetworkA87930 |  | Zone 3 - Road 22 - Storm Network - Perforated 160 mm - Pipe Installation | 7d | 2026-07-14 A | 2026-07-21 A | RSZone 3Road 22Storm NetworkA87920 | 100% |  |  |  |  | Contract Price Original Scope [32102.2 SAR]; Excavator Operator [40 h]; Crane Operator [40 h]; Equipment Operator [40 h]; Labour [274.07 h]; Perforated 160 mm [309] | 32,102.18 | 32,102.18 | RD22 |
| RSZone 3Road 22Storm NetworkA87950 |  | Zone 3 - Road 22 - Storm Network - Perforated 160 mm - Backfilling | 5d | 2026-07-22 A | 2026-07-27 A | RSZone 3Road 22Storm NetworkA87930 | 100% |  |  |  |  | Contract Price Original Scope [4938.8 SAR]; Excavator Operator [20 h]; Compactor Operator [20 h]; Dump Truck Operator [20 h]; Water Truck Operator [20 h]; Labour [42.16 h]; Perforated 160 mm [309] | 4,938.8 | 4,938.8 | RD22 |
| RSZone 3Road 22Storm NetworkA87940 |  | Zone 3 - Road 22 - Storm Network - Perforated 160 mm - Test | 2d | 2026-11-09 | 2026-11-10 | RSZone 3Road 22Storm NetworkA87950 |  |  |  | 123.4d | 109d | Contract Price Original Scope [4938.8 SAR]; Pump Operator [20 h]; Equipment Operator [20 h]; Labour [42.16 h]; Perforated 160 mm [309] | 4,938.8 |  | RD22 |
|  | 3 | **Gravel and Geotextile** |  | 2026-07-05 | 2026-07-06 |  |  |  |  |  |  |  |  |  |  |
| RSZone 3Road 22Storm NetworkA87960 |  | Zone 3 - Road 22 - Storm Network - Gravel and Geotextile - Installation | 2d | 2026-07-05 A | 2026-07-06 A | RSZone 3Road 22Storm NetworkA87950 | 100% |  |  |  |  | Contract Price Original Scope [36245.2 SAR]; Excavator Operator [8 h]; Dump Truck Operator [8 h]; Equipment Operator [8 h]; Water Truck Operator [8 h]; Labour [309.44 h]; Gravel and Geotextile [309] | 36,245.16 | 36,245.16 | RD22 |
|  | 4 | **Concrete Manholes on Box Culvert** |  | 2027-02-27 | 2027-04-03 |  |  |  |  |  |  |  |  |  |  |
| RSZone 3Road 22Storm NetworkA95620 |  | Zone 3 - Road 22 - Storm Network - Concrete Manholes on Box Culvert - Excavation | 3d | 2027-02-27 | 2027-03-03 | RSZone 3Road 21Storm NetworkA95550 SS |  |  |  | 14.4d | 0d | Contract Price Original Scope [4013.44 SAR]; Labour [34.26 h]; Concrete Manholes on Box Culvert - Manhole with a depth of more than -4.0 m [3] | 4,013.44 |  | RD22 |
| RSZone 3Road 22Storm NetworkA95640 |  | Zone 3 - Road 22 - Storm Network - Concrete Manholes on Box Culvert - Slab | 3d | 2027-03-04 | 2027-03-10 | RSZone 3Road 22Storm NetworkA95620 |  |  |  | 14.4d | 0d | Contract Price Original Scope [28094.1 SAR]; Labour [239.85 h]; Concrete Manholes on Box Culvert - Manhole with a depth of more than -4.0 m [3] | 28,094.07 |  | RD22 |
| RSZone 3Road 22Storm NetworkA95630 |  | Zone 3 - Road 22 - Storm Network - Concrete Manholes on Box Culvert - Walls | 3d | 2027-03-10 | 2027-03-16 | RSZone 3Road 22Storm NetworkA95640 |  |  |  | 14.4d | 0d | Contract Price Original Scope [16053.8 SAR]; Labour [137.06 h]; Concrete Manholes on Box Culvert - Manhole with a depth of more than -4.0 m [3] | 16,053.76 |  | RD22 |
| RSZone 3Road 22Storm NetworkA95660 |  | Zone 3 - Road 22 - Storm Network - Concrete Manholes on Box Culvert - Internal Isolation | 3d | 2027-03-16 | 2027-03-24 | RSZone 3Road 22Storm NetworkA95630 |  |  |  | 14.4d | 0d | Contract Price Original Scope [4013.44 SAR]; Labour [34.26 h]; Concrete Manholes on Box Culvert - Manhole with a depth of more than -4.0 m [3] | 4,013.44 |  | RD22 |
| RSZone 3Road 22Storm NetworkA95650 |  | Zone 3 - Road 22 - Storm Network - Concrete Manholes on Box Culvert - D.I Cover | 3d | 2027-03-24 | 2027-03-28 | RSZone 3Road 22Storm NetworkA95660 |  |  |  | 14.4d | 0d | Contract Price Original Scope [8026.88 SAR]; Labour [68.53 h]; Concrete Manholes on Box Culvert - Manhole with a depth of more than -4.0 m [11] | 8,026.88 |  | RD22 |
| RSZone 3Road 22Storm NetworkA95670 |  | Zone 3 - Road 22 - Storm Network - Concrete Manholes on Box Culvert - External Isolation | 3d | 2027-03-28 | 2027-03-31 | RSZone 3Road 22Storm NetworkA95650 |  |  |  | 14.4d | 0d | Contract Price Original Scope [4013.44 SAR]; Labour [34.26 h]; Concrete Manholes on Box Culvert - Manhole with a depth of more than -4.0 m [3] | 4,013.44 |  | RD22 |
| RSZone 3Road 22Storm NetworkA95680 |  | Zone 3 - Road 22 - Storm Network - Concrete Manholes on Box Culvert - Backfilling | 2d | 2027-03-31 | 2027-04-03 | RSZone 3Road 22Storm NetworkA95670 |  |  |  | 14.4d | 0d | Contract Price Original Scope [4013.44 SAR]; Excavator Operator [20 h]; Compactor Operator [20 h]; Dump Truck Operator [20 h]; Water Truck Operator [20 h]; Labour [34.26 h]; Concrete Manholes on Box Culvert - Manhole with a depth of more than -4.0 m [3] | 4,013.44 |  | RD22 |

| ID | WBS | Activity | Duration | Start | Finish | Predecessors | Complete | Planned start | Planned finish | Total float | Free float | Resources | Cost | Actual cost | MODON |
| --- | --- | --- | --- | --- | --- | --- | --- | --- | --- | --- | --- | --- | --- | --- | --- |
|  | 3 | **Potable Water Network** |  | 2026-05-03 | 2026-11-16 |  |  |  |  |  |  |  |  |  |  |
|  | 1 | **Buried Valves** |  | 2026-05-03 | 2026-11-16 |  |  |  |  |  |  |  |  |  |  |
| RSZone 3Road 22Potable NetworkA82990 |  | Zone 3 - Road 22 - Potable Water Network - Buried Valves - Excavation | 3d | 2026-05-03 A | 2026-05-05 A | RSZone 3Road 21Potable NetworkA82950 | 100% |  |  |  |  | Contract Price Original Scope [1762.09 SAR]; Excavator Operator [30 h]; Dump Truck Operator [30 h]; Labour [15.04 h]; Buried Valves [11] | 1,762.09 | 1,762.09 | RD22 |
| RSZone 3Road 22Potable NetworkA83000 |  | Zone 3 - Road 22 - Potable Water Network - Buried Valves - Installation | 1.9d | 2026-05-06 A | 2026-05-07 A | RSZone 3Road 22Potable NetworkA82990 | 100% |  |  |  |  | Contract Price Original Scope [22907.1 SAR]; Labour [195.57 h]; Buried Valves [11] | 22,907.14 | 22,907.14 | RD22 |
| RSZone 3Road 22Potable NetworkA83010 |  | Zone 3 - Road 22 - Potable Water Network - Buried Valves - Surface Box | 3d | 2026-11-09 | 2026-11-11 | RSZone 3Road 22Potable NetworkA83000 |  |  |  | 94.4d | 0d | Labour; Buried Valves [11] |  |  | RD22 |
| RSZone 3Road 22Potable NetworkA83020 |  | Zone 3 - Road 22 - Potable Water Network - Buried Valves - Test | 2d | 2026-11-12 | 2026-11-14 | RSZone 3Road 22Potable NetworkA83010 |  |  |  | 94.4d | 0d | Contract Price Original Scope [7048.35 SAR]; Pump Operator [20 h]; Equipment Operator [20 h]; Labour [60.18 h]; Buried Valves [11] | 7,048.35 |  | RD22 |
| RSZone 3Road 22Potable NetworkA83030 |  | Zone 3 - Road 22 - Potable Water Network - Buried Valves - Backfilling | 2d | 2026-11-15 | 2026-11-16 | RSZone 3Road 22Potable NetworkA83020 |  |  |  | 94.4d | 94.2d | Contract Price Original Scope [3524.17 SAR]; Excavator Operator [20 h]; Compactor Operator [20 h]; Dump Truck Operator [20 h]; Water Truck Operator [20 h]; Labour [30.09 h]; Buried Valves [11] | 3,524.17 |  | RD22 |
|  | 7 | **FIRE HYDRANT** |  | 2026-05-12 | 2026-11-16 |  |  |  |  |  |  |  |  |  |  |
| RSZone 3Road 22Potable NetworkA84250 |  | Zone 3 - Road 22 - Potable Water Network - FIRE HYDRANT - Excavation | 5d | 2026-05-12 A | 2026-05-17 A | RSZone 3Road 22Potable NetworkA83000 | 100% |  |  |  |  | Contract Price Original Scope [4161.85 SAR]; Excavator Operator [30 h]; Dump Truck Operator [30 h]; Labour [35.53 h]; Fire Hydrant [3] | 4,161.85 | 4,161.85 | RD22 |
| RSZone 3Road 22Potable NetworkA84260 |  | Zone 3 - Road 22 - Potable Water Network - FIRE HYDRANT - Buried Gate Valve Installation | 3d | 2026-05-18 A | 2026-05-20 A | RSZone 3Road 22Potable NetworkA84250 | 100% |  |  |  |  | Labour; Fire Hydrant [3] |  |  | RD22 |
| RSZone 3Road 22Potable NetworkA84270 |  | Zone 3 - Road 22 - Potable Water Network - FIRE HYDRANT - Fire Hydrant Installation | 5d | 2026-05-21 A | 2026-05-26 A | RSZone 3Road 22Potable NetworkA84260 | 100% | 2026-05-21 | 2026-05-27 |  |  | Contract Price Original Scope [30381.5 SAR]; Labour [259.38 h]; Fire Hydrant [3] | 30,381.48 | 30,381.48 | RD22 |
| RSZone 3Road 22Potable NetworkA84280 |  | Zone 3 - Road 22 - Potable Water Network - FIRE HYDRANT - Surface Box | 3d | 2026-11-09 | 2026-11-11 | RSZone 3Road 22Potable NetworkA84270 |  |  |  | 94.4d | 0d | Labour; Fire Hydrant [3] |  |  | RD22 |
| RSZone 3Road 22Potable NetworkA84290 |  | Zone 3 - Road 22 - Potable Water Network - FIRE HYDRANT - Test | 2d | 2026-11-12 | 2026-11-14 | RSZone 3Road 22Potable NetworkA84280 |  |  |  | 94.4d | 0d | Contract Price Original Scope [2913.29 SAR]; Pump Operator [20 h]; Equipment Operator [20 h]; Labour [24.87 h]; Fire Hydrant [3] | 2,913.29 |  | RD22 |
| RSZone 3Road 22Potable NetworkA84300 |  | Zone 3 - Road 22 - Potable Water Network - FIRE HYDRANT - Backfilling | 2d | 2026-11-15 | 2026-11-16 | RSZone 3Road 22Potable NetworkA84290 |  |  |  | 94.4d | 94.2d | Contract Price Original Scope [4161.85 SAR]; Excavator Operator [20 h]; Compactor Operator [20 h]; Dump Truck Operator [20 h]; Water Truck Operator [20 h]; Labour [35.53 h]; Fire Hydrant [3] | 4,161.85 |  | RD22 |
|  | 2 | **Lateral Irrigation Network** |  | 2026-04-09 | 2026-12-07 |  |  |  |  |  |  |  |  |  |  |
|  | 1 | **Buried Valves** |  | 2026-04-09 | 2026-12-07 |  |  |  |  |  |  |  |  |  |  |
| RSZone 3Road 22Irrigation NetworkA80140 |  | Zone 3 - Road 22 - Lateral Irrigation Network - Buried Valves - Excavation | 5d | 2026-04-09 A | 2026-04-14 A | RSZone 3Road 21Irrigation NetworkA80100 | 100% | 2026-04-09 | 2026-04-15 |  |  | Contract Price Original Scope [605.31 SAR]; Excavator Operator [30 h]; Dump Truck Operator [30 h]; Labour [5.17 h]; Buried Valves [9] | 605.31 | 605.31 | RD22 |
| RSZone 3Road 22Irrigation NetworkA80150 |  | Zone 3 - Road 22 - Lateral Irrigation Network - Buried Valves - Installation | 4d | 2026-04-15 A | 2026-04-19 A | RSZone 3Road 22Irrigation NetworkA80140 | 100% |  |  |  |  | Contract Price Original Scope [7869.03 SAR]; Labour [67.18 h]; Buried Valves [9] | 7,869.03 | 7,869.03 | RD22 |
| RSZone 3Road 22Irrigation NetworkA80160 |  | Zone 3 - Road 22 - Lateral Irrigation Network - Buried Valves - Surface Box | 10d | 2026-11-09 | 2026-11-19 | RSZone 3Road 22Irrigation NetworkA80150 |  |  |  | 76.4d | 0d | Labour; Buried Valves [9] |  |  | RD22 |
| RSZone 3Road 22Irrigation NetworkA80170 |  | Zone 3 - Road 22 - Lateral Irrigation Network - Buried Valves - Test | 10d | 2026-11-21 | 2026-12-01 | RSZone 3Road 22Irrigation NetworkA80160 |  |  |  | 76.4d | 0d | Contract Price Original Scope [2421.24 SAR]; Pump Operator [20 h]; Equipment Operator [20 h]; Labour [20.67 h]; Buried Valves [9] | 2,421.24 |  | RD22 |
| RSZone 3Road 22Irrigation NetworkA80180 |  | Zone 3 - Road 22 - Lateral Irrigation Network - Buried Valves - Backfilling | 5d | 2026-12-02 | 2026-12-07 | RSZone 3Road 22Irrigation NetworkA80170 |  |  |  | 76.4d | 75.76d | Contract Price Original Scope [1210.62 SAR]; Excavator Operator [20 h]; Compactor Operator [20 h]; Dump Truck Operator [20 h]; Water Truck Operator [20 h]; Labour [10.34 h]; Buried Valves [9] | 1,210.62 |  | RD22 |
|  | 1 | **Telecom** |  | 2026-09-29 | 2027-03-16 |  |  |  |  |  |  |  |  |  |  |
|  | 1 | **Telecom Pipe** |  | 2027-02-17 | 2027-03-16 |  |  |  |  |  |  |  |  |  |  |
| RSZone 3Road 22Telecom NetworkA87820 |  | Zone 3 - Road 22 - Telecom Network - Telecom Pipe - Excavation | 5d | 2027-02-17 | 2027-02-25 | RSZone 3Road 21Telecom NetworkA87670 |  |  |  | 0.4d | 0d | Contract Price Original Scope [8620.27 SAR]; Excavator Operator [30 h]; Dump Truck Operator [30 h]; Labour [73.6 h]; Telecom Pipe [400] | 8,620.27 |  | RD22 |
| RSZone 3Road 22Telecom NetworkA87830 |  | Zone 3 - Road 22 - Telecom Network - Telecom Pipe - Concrete Pouring | 5d | 2027-02-27 | 2027-03-08 | RSZone 3Road 22Telecom NetworkA87820 |  |  |  | 6.4d | 0d | Contract Price Original Scope [60341.9 SAR]; Crane Operator [13 h]; Pump Operator [13 h]; Equipment Operator [13 h]; Labour [515.17 h]; Telecom Pipe [400] | 60,341.86 |  | RD22 |
| RSZone 3Road 22Telecom NetworkA87840 |  | Zone 3 - Road 22 - Telecom Network - Telecom Pipe - Test | 2d | 2027-03-08 | 2027-03-11 | RSZone 3Road 22Telecom NetworkA87830 |  |  |  | 6.4d | 0d | Contract Price Original Scope [8620.27 SAR]; Pump Operator [20 h]; Equipment Operator [20 h]; Labour [73.6 h]; Telecom Pipe [400] | 8,620.27 |  | RD22 |
| RSZone 3Road 22Telecom NetworkA87850 |  | Zone 3 - Road 22 - Telecom Network - Telecom Pipe - Backfilling | 2d | 2027-03-13 | 2027-03-16 | RSZone 3Road 22Telecom NetworkA87840 |  |  |  | 6.4d | 6d | Contract Price Original Scope [8620.27 SAR]; Excavator Operator [20 h]; Compactor Operator [20 h]; Dump Truck Operator [20 h]; Water Truck Operator [20 h]; Labour [73.6 h]; Telecom Pipe [400] | 8,620.27 |  | RD22 |

| ID | WBS | Activity | Duration | Start | Finish | Predecessors | Complete | Total float | Free float | Resources | Cost | Actual cost | MODON |
| --- | --- | --- | --- | --- | --- | --- | --- | --- | --- | --- | --- | --- | --- |
|  | 2 | **TELECOM MANHOLE** |  | 2026-09-29 | 2026-12-12 |  |  |  |  |  |  |  |  |
| RSZone 3Road 22Telecom NetworkA87900-old |  | Zone 3 - Road 22 - Telecom Network - TELECOM MANHOLE - Manhole Installation (old) | 29d | 2026-09-29 A | 2026-11-01 A | RSZone 3Road 21Telecom NetworkA87750-old | 100% |  |  | Contract Price Original Scope [14257.7 SAR]; Crane Operator [11.4 h]; Boom Truck Operator [11.4 h]; Equipment Operator [11.4 h]; Labour [121.72 h]; Telecom Manhole [0.95] | 14,257.67 | 14,257.67 | RD22 |
| RSZone 3Road 22Telecom NetworkA87900 |  | Zone 3 - Road 22 - Telecom Network - TELECOM MANHOLE - Manhole Installation | 1d | 2026-12-12 | 2026-12-12 | RSZone 3Road 22Telecom NetworkA87900-old, RSZone 3Road 21Telecom NetworkA87750 |  | 76.4d | 0d | Contract Price Original Scope [750.4 SAR]; Crane Operator [0.6 h]; Boom Truck Operator [0.6 h]; Equipment Operator [0.6 h]; Labour [6.41 h]; Telecom Manhole [0.05] | 750.4 |  | RD22 |
|  | 19 | **Road 23** |  | 2026-04-12 | 2027-04-03 |  |  |  |  |  |  |  |  |
|  | 4 | **Storm Network** |  | 2027-02-27 | 2027-04-03 |  |  |  |  |  |  |  |  |
|  | 4 | **Concrete Manholes on Box Culvert** |  | 2027-02-27 | 2027-04-03 |  |  |  |  |  |  |  |  |
| RSZone 3Road 23Storm NetworkA95750 |  | Zone 3 - Road 23 - Storm Network - Concrete Manholes on Box Culvert - Excavation | 3d | 2027-02-27 | 2027-03-03 | RSZone 3Road 22Storm NetworkA95620 SS |  | 14.4d | 0d | Contract Price Original Scope [56187.6 SAR]; Labour [479.7 h]; Concrete Manholes on Box Culvert - Manhole with a depth of 2.0-2.5 m [59] | 56,187.56 |  | RD23 |
| RSZone 3Road 23Storm NetworkA95770 |  | Zone 3 - Road 23 - Storm Network - Concrete Manholes on Box Culvert - Slab | 3d | 2027-03-04 | 2027-03-10 | RSZone 3Road 23Storm NetworkA95750 |  | 14.4d | 0d | Contract Price Original Scope [393313 SAR]; Labour [3357.9 h]; Concrete Manholes on Box Culvert - Manhole with a depth of 2.0-2.5 m [59] | 393,312.89 |  | RD23 |
| RSZone 3Road 23Storm NetworkA95760 |  | Zone 3 - Road 23 - Storm Network - Concrete Manholes on Box Culvert - Walls | 3d | 2027-03-10 | 2027-03-16 | RSZone 3Road 23Storm NetworkA95770 |  | 14.4d | 0d | Contract Price Original Scope [224750 SAR]; Labour [1918.8 h]; Concrete Manholes on Box Culvert - Manhole with a depth of 2.0-2.5 m [59] | 224,750.22 |  | RD23 |
| RSZone 3Road 23Storm NetworkA95790 |  | Zone 3 - Road 23 - Storm Network - Concrete Manholes on Box Culvert - Internal Isolation | 3d | 2027-03-16 | 2027-03-24 | RSZone 3Road 23Storm NetworkA95760 |  | 14.4d | 0d | Contract Price Original Scope [56187.6 SAR]; Labour [479.7 h]; Concrete Manholes on Box Culvert - Manhole with a depth of 2.0-2.5 m [59] | 56,187.56 |  | RD23 |
| RSZone 3Road 23Storm NetworkA95780 |  | Zone 3 - Road 23 - Storm Network - Concrete Manholes on Box Culvert - D.I Cover | 3d | 2027-03-24 | 2027-03-28 | RSZone 3Road 23Storm NetworkA95790 |  | 14.4d | 0d | Contract Price Original Scope [112375 SAR]; Labour [959.4 h]; Concrete Manholes on Box Culvert - Manhole with a depth of 2.0-2.5 m [225] | 112,375.11 |  | RD23 |
| RSZone 3Road 23Storm NetworkA95800 |  | Zone 3 - Road 23 - Storm Network - Concrete Manholes on Box Culvert - External Isolation | 3d | 2027-03-28 | 2027-03-31 | RSZone 3Road 23Storm NetworkA95780 |  | 14.4d | 0d | Contract Price Original Scope [56187.6 SAR]; Labour [479.7 h]; Concrete Manholes on Box Culvert - Manhole with a depth of 2.0-2.5 m [59] | 56,187.56 |  | RD23 |
| RSZone 3Road 23Storm NetworkA95810 |  | Zone 3 - Road 23 - Storm Network - Concrete Manholes on Box Culvert - Backfilling | 2d | 2027-03-31 | 2027-04-03 | RSZone 3Road 23Storm NetworkA95800 |  | 14.4d | 0d | Contract Price Original Scope [56187.6 SAR]; Excavator Operator [20 h]; Compactor Operator [20 h]; Dump Truck Operator [20 h]; Water Truck Operator [20 h]; Labour [479.7 h]; Concrete Manholes on Box Culvert - Manhole with a depth of 2.0-2.5 m [59] | 56,187.56 |  | RD23 |
|  | 5 | **Sewage Network** |  | 2026-08-26 | 2026-09-10 |  |  |  |  |  |  |  |  |
|  | 2 | **UPVC Pipes 150 MM** |  | 2026-08-30 | 2026-09-10 |  |  |  |  |  |  |  |  |
| RSZone 3Road 21Sewage NetworkA94460 |  | Zone 3 - Road 23 - Sewage Network - UPVC Pipes 150 MM - Excavation | 4.9d | 2026-08-30 A | 2026-09-03 A | RSZone 3Road 21Sewage NetworkA94370 | 100% |  |  | Contract Price Original Scope [46.52 SAR]; Excavator Operator [30 h]; Dump Truck Operator [30 h]; Labour [0.4 h]; UPVC Pipes 150 MM [1.49] | 46.52 | 46.52 | RD23 |
| RSZone 3Road 21Sewage NetworkA94470 |  | Zone 3 - Road 23 - Sewage Network - UPVC Pipes 150 MM - Installation | 2d | 2026-09-06 A | 2026-09-07 A | RSZone 3Road 21Sewage NetworkA94460 | 100% |  |  | Contract Price Original Scope [31.01 SAR]; Excavator Operator [5 h]; Crane Operator [5 h]; Equipment Operator [5 h]; Labour [0.26 h]; UPVC Pipes 150 MM [1.49] | 31.01 | 31.01 | RD23 |
| RSZone 3Road 21Sewage NetworkA94480 |  | Zone 3 - Road 23 - Sewage Network - UPVC Pipes 150 MM - Test | 2d | 2026-09-07 A | 2026-09-08 A | RSZone 3Road 21Sewage NetworkA94470 | 100% |  |  | Contract Price Original Scope [31.01 SAR]; Pump Operator [20 h]; Equipment Operator [20 h]; Labour [0.26 h]; UPVC Pipes 150 MM [1.49] | 31.01 | 31.01 | RD23 |
| RSZone 3Road 21Sewage NetworkA94490 |  | Zone 3 - Road 23 - Sewage Network - UPVC Pipes 150 MM - Backfilling | 2.9d | 2026-09-08 A | 2026-09-10 A | RSZone 3Road 21Sewage NetworkA94480 | 100% |  |  | Contract Price Original Scope [201.6 SAR]; Excavator Operator [20 h]; Compactor Operator [20 h]; Dump Truck Operator [20 h]; Water Truck Operator [20 h]; Labour [1.72 h]; UPVC Pipes 150 MM [1.49] | 201.6 | 201.6 | RD23 |
|  | 1 | **UPVC Pipes 200 MM** |  | 2026-08-26 | 2026-09-09 |  |  |  |  |  |  |  |  |
| RSZone 3Road 21Sewage NetworkA94420 |  | Zone 3 - Road 23 - Sewage Network - UPVC Pipes 200 MM - Excavation | 4d | 2026-08-26 A | 2026-08-30 A | RSZone 3Road 21Sewage NetworkA94490 | 100% |  |  | Contract Price Original Scope [151.84 SAR]; Excavator Operator [30 h]; Dump Truck Operator [30 h]; Labour [1.3 h]; UPVC Pipes 200 MM [1.98] | 151.84 | 151.84 | RD23 |
| RSZone 3Road 21Sewage NetworkA94430 |  | Zone 3 - Road 23 - Sewage Network - UPVC Pipes 200 MM - Installation | 2d | 2026-08-31 A | 2026-09-01 A | RSZone 3Road 21Sewage NetworkA94420 | 100% |  |  | Contract Price Original Scope [101.22 SAR]; Excavator Operator [5 h]; Crane Operator [5 h]; Equipment Operator [5 h]; Labour [0.86 h]; UPVC Pipes 200 MM [1.98] | 101.22 | 101.22 | RD23 |
| RSZone 3Road 21Sewage NetworkA94440 |  | Zone 3 - Road 23 - Sewage Network - UPVC Pipes 200 MM - Test | 1.9d | 2026-09-02 A | 2026-09-03 A | RSZone 3Road 21Sewage NetworkA94430 | 100% |  |  | Contract Price Original Scope [101.22 SAR]; Pump Operator [20 h]; Equipment Operator [20 h]; Labour [0.86 h]; UPVC Pipes 200 MM [1.98] | 101.22 | 101.22 | RD23 |
| RSZone 3Road 21Sewage NetworkA94450 |  | Zone 3 - Road 23 - Sewage Network - UPVC Pipes 200 MM - Backfilling | 4d | 2026-09-06 A | 2026-09-09 A | RSZone 3Road 21Sewage NetworkA94440 | 100% |  |  | Contract Price Original Scope [657.96 SAR]; Excavator Operator [20 h]; Compactor Operator [20 h]; Dump Truck Operator [20 h]; Water Truck Operator [20 h]; Labour [5.62 h]; UPVC Pipes 200 MM [1.98] | 657.96 | 657.96 | RD23 |

| ID | WBS | Activity | Duration | Start | Finish | Predecessors | Complete | Planned start | Planned finish | Total float | Free float | Resources | Cost | Actual cost | MODON |
| --- | --- | --- | --- | --- | --- | --- | --- | --- | --- | --- | --- | --- | --- | --- | --- |
|  | 3 | **Potable Water Network** |  | 2026-05-04 | 2026-11-16 |  |  |  |  |  |  |  |  |  |  |
|  | 1 | **Buried Valves** |  | 2026-05-04 | 2026-11-16 |  |  |  |  |  |  |  |  |  |  |
| RSZone 3Road 23Potable NetworkA83040 |  | Zone 3 - Road 23 - Potable Water Network - Buried Valves - Excavation | 6d | 2026-05-04 A | 2026-05-10 A | RSZone 3Road 22Potable NetworkA84270 | 100% |  |  |  |  | Contract Price Original Scope [1281.52 SAR]; Excavator Operator [30 h]; Dump Truck Operator [30 h]; Labour [10.94 h]; Buried Valves [8] | 1,281.52 | 1,281.52 | RD23 |
| RSZone 3Road 23Potable NetworkA83050 |  | Zone 3 - Road 23 - Potable Water Network - Buried Valves - Installation | 2d | 2026-05-11 A | 2026-05-12 A | RSZone 3Road 23Potable NetworkA83040 | 100% |  |  |  |  | Contract Price Original Scope [16659.7 SAR]; Labour [142.23 h]; Buried Valves [8] | 16,659.74 | 16,659.74 | RD23 |
| RSZone 3Road 23Potable NetworkA83060 |  | Zone 3 - Road 23 - Potable Water Network - Buried Valves - Surface Box | 3d | 2026-11-09 | 2026-11-11 | RSZone 3Road 23Potable NetworkA83050 |  |  |  | 94.4d | 0d | Labour; Buried Valves [8] |  |  | RD23 |
| RSZone 3Road 23Potable NetworkA83070 |  | Zone 3 - Road 23 - Potable Water Network - Buried Valves - Test | 2d | 2026-11-12 | 2026-11-14 | RSZone 3Road 23Potable NetworkA83060 |  |  |  | 94.4d | 0d | Contract Price Original Scope [5126.07 SAR]; Pump Operator [20 h]; Equipment Operator [20 h]; Labour [43.76 h]; Buried Valves [8] | 5,126.07 |  | RD23 |
| RSZone 3Road 23Potable NetworkA83080 |  | Zone 3 - Road 23 - Potable Water Network - Buried Valves - Backfilling | 2d | 2026-11-15 | 2026-11-16 | RSZone 3Road 23Potable NetworkA83070 |  |  |  | 94.4d | 94.2d | Contract Price Original Scope [2563.04 SAR]; Excavator Operator [20 h]; Compactor Operator [20 h]; Dump Truck Operator [20 h]; Water Truck Operator [20 h]; Labour [21.88 h]; Buried Valves [8] | 2,563.04 |  | RD23 |
|  | 7 | **FIRE HYDRANT** |  | 2026-05-14 | 2026-11-16 |  |  |  |  |  |  |  |  |  |  |
| RSZone 3Road 23Potable NetworkA84310 |  | Zone 3 - Road 23 - Potable Water Network - FIRE HYDRANT - Excavation | 5d | 2026-05-14 A | 2026-05-19 A | RSZone 3Road 23Potable NetworkA83050 | 100% | 2026-05-14 | 2026-05-20 |  |  | Contract Price Original Scope [4161.85 SAR]; Excavator Operator [30 h]; Dump Truck Operator [30 h]; Labour [35.53 h]; Fire Hydrant [3] | 4,161.85 | 4,161.85 | RD23 |
| RSZone 3Road 23Potable NetworkA84320 |  | Zone 3 - Road 23 - Potable Water Network - FIRE HYDRANT - Buried Gate Valve Installation | 5d | 2026-05-20 A | 2026-05-25 A | RSZone 3Road 23Potable NetworkA84310 | 100% |  |  |  |  | Labour; Fire Hydrant [3] |  |  | RD23 |
| RSZone 3Road 23Potable NetworkA84330 |  | Zone 3 - Road 23 - Potable Water Network - FIRE HYDRANT - Fire Hydrant Installation | 2d | 2026-05-26 A | 2026-05-27 A | RSZone 3Road 23Potable NetworkA84320 | 100% |  |  |  |  | Contract Price Original Scope [30381.5 SAR]; Labour [259.38 h]; Fire Hydrant [3] | 30,381.48 | 30,381.48 | RD23 |
| RSZone 3Road 23Potable NetworkA84340 |  | Zone 3 - Road 23 - Potable Water Network - FIRE HYDRANT - Surface Box | 3d | 2026-11-09 | 2026-11-11 | RSZone 3Road 23Potable NetworkA84330 |  |  |  | 94.4d | 0d | Labour; Fire Hydrant [3] |  |  | RD23 |
| RSZone 3Road 23Potable NetworkA84350 |  | Zone 3 - Road 23 - Potable Water Network - FIRE HYDRANT - Test | 2d | 2026-11-12 | 2026-11-14 | RSZone 3Road 23Potable NetworkA84340 |  |  |  | 94.4d | 0d | Contract Price Original Scope [2913.29 SAR]; Pump Operator [20 h]; Equipment Operator [20 h]; Labour [24.87 h]; Fire Hydrant [3] | 2,913.29 |  | RD23 |
| RSZone 3Road 23Potable NetworkA84360 |  | Zone 3 - Road 23 - Potable Water Network - FIRE HYDRANT - Backfilling | 2d | 2026-11-15 | 2026-11-16 | RSZone 3Road 23Potable NetworkA84350 |  |  |  | 94.4d | 94.2d | Contract Price Original Scope [4161.85 SAR]; Excavator Operator [20 h]; Compactor Operator [20 h]; Dump Truck Operator [20 h]; Water Truck Operator [20 h]; Labour [35.53 h]; Fire Hydrant [3] | 4,161.85 |  | RD23 |
|  | 2 | **Lateral Irrigation Network** |  | 2026-04-12 | 2026-11-21 |  |  |  |  |  |  |  |  |  |  |
|  | 1 | **Buried Valves** |  | 2026-04-12 | 2026-11-21 |  |  |  |  |  |  |  |  |  |  |
| RSZone 3Road 23Irrigation NetworkA80190 |  | Zone 3 - Road 23 - Lateral Irrigation Network - Buried Valves - Excavation | 4d | 2026-04-12 A | 2026-04-15 A | RSZone 3Road 22Irrigation NetworkA80150 | 100% |  |  |  |  | Contract Price Original Scope [134.51 SAR]; Excavator Operator [30 h]; Dump Truck Operator [30 h]; Labour [1.15 h]; Buried Valves [2] | 134.51 | 134.51 | RD23 |
| RSZone 3Road 23Irrigation NetworkA80200 |  | Zone 3 - Road 23 - Lateral Irrigation Network - Buried Valves - Installation | 0.9d | 2026-04-16 A | 2026-04-17 A | RSZone 3Road 23Irrigation NetworkA80190 | 100% | 2026-04-16 | 2026-04-16 |  |  | Contract Price Original Scope [1748.67 SAR]; Labour [14.93 h]; Buried Valves [2] | 1,748.67 | 1,748.67 | RD23 |
| RSZone 3Road 23Irrigation NetworkA80220 |  | Zone 3 - Road 23 - Lateral Irrigation Network - Buried Valves - Test | 2d | 2026-11-09 | 2026-11-10 | RSZone 3Road 23Irrigation NetworkA80200 |  |  |  | 90.4d | 0d | Contract Price Original Scope [538.05 SAR]; Pump Operator [20 h]; Equipment Operator [20 h]; Labour [4.59 h]; Buried Valves [2] | 538.05 |  | RD23 |
| RSZone 3Road 23Irrigation NetworkA80210 |  | Zone 3 - Road 23 - Lateral Irrigation Network - Buried Valves - Surface Box | 2d | 2026-11-11 | 2026-11-12 | RSZone 3Road 23Irrigation NetworkA80220 |  |  |  | 90.4d | 0d | Labour; Buried Valves [2] |  |  | RD23 |
| RSZone 3Road 23Irrigation NetworkA80230 |  | Zone 3 - Road 23 - Lateral Irrigation Network - Buried Valves - Backfilling | 7d | 2026-11-14 | 2026-11-21 | RSZone 3Road 23Irrigation NetworkA80210 |  |  |  | 90.4d | 89.76d | Contract Price Original Scope [269.03 SAR]; Excavator Operator [20 h]; Compactor Operator [20 h]; Dump Truck Operator [20 h]; Water Truck Operator [20 h]; Labour [2.3 h]; Buried Valves [2] | 269.03 |  | RD23 |
|  | 1 | **Telecom** |  | 2026-10-05 | 2027-03-28 |  |  |  |  |  |  |  |  |  |  |
|  | 1 | **Telecom Pipe** |  | 2027-02-27 | 2027-03-28 |  |  |  |  |  |  |  |  |  |  |
| RSZone 3Road 23Telecom NetworkA87970 |  | Zone 3 - Road 23 - Telecom Network - Telecom Pipe - Excavation | 2d | 2027-02-27 | 2027-03-02 | RSZone 3Road 22Telecom NetworkA87820 |  |  |  | 0.4d | 0d | Contract Price Original Scope [8620.27 SAR]; Excavator Operator [30 h]; Dump Truck Operator [30 h]; Labour [73.6 h]; Telecom Pipe [400] | 8,620.27 |  | RD23 |
| RSZone 3Road 23Telecom NetworkA87980 |  | Zone 3 - Road 23 - Telecom Network - Telecom Pipe - Concrete Pouring | 10d | 2027-03-02 | 2027-03-24 | RSZone 3Road 23Telecom NetworkA87970 |  |  |  | 0.4d | 0d | Contract Price Original Scope [60341.9 SAR]; Crane Operator [13 h]; Pump Operator [13 h]; Equipment Operator [13 h]; Labour [515.17 h]; Telecom Pipe [400] | 60,341.86 |  | RD23 |
| RSZone 3Road 23Telecom NetworkA87990 |  | Zone 3 - Road 23 - Telecom Network - Telecom Pipe - Test | 2d | 2027-03-24 | 2027-03-27 | RSZone 3Road 23Telecom NetworkA87980 |  |  |  | 0.4d | 0d | Contract Price Original Scope [8620.27 SAR]; Pump Operator [20 h]; Equipment Operator [20 h]; Labour [73.6 h]; Telecom Pipe [400] | 8,620.27 |  | RD23 |
| RSZone 3Road 23Telecom NetworkA88000 |  | Zone 3 - Road 23 - Telecom Network - Telecom Pipe - Backfilling | 1d | 2027-03-27 | 2027-03-28 | RSZone 3Road 23Telecom NetworkA87980, RSZone 3Road 23Telecom NetworkA87990 |  |  |  | 0.4d | 0d | Contract Price Original Scope [8620.27 SAR]; Excavator Operator [20 h]; Compactor Operator [20 h]; Dump Truck Operator [20 h]; Water Truck Operator [20 h]; Labour [73.6 h]; Telecom Pipe [400] | 8,620.27 |  | RD23 |

| ID | WBS | Activity | Duration | Start | Finish | Predecessors | Complete | Total float | Free float | Resources | Cost | Actual cost | MODON |
| --- | --- | --- | --- | --- | --- | --- | --- | --- | --- | --- | --- | --- | --- |
|  | 2 | **TELECOM MANHOLE** |  | 2026-10-05 | 2026-12-13 |  |  |  |  |  |  |  |  |
| RSZone 3Road 23Telecom NetworkA88050-old |  | Zone 3 - Road 23 - Telecom Network - TELECOM MANHOLE - Manhole Installation (old) | 24d | 2026-10-05 A | 2026-11-01 A | RSZone 3Road 22Telecom NetworkA87900-old | 100% |  |  | Contract Price Original Scope [28515.3 SAR]; Crane Operator [11.4 h]; Boom Truck Operator [11.4 h]; Equipment Operator [11.4 h]; Labour [243.45 h]; Telecom Manhole [1.9] | 28,515.33 | 28,515.33 | RD23 |
| RSZone 3Road 23Telecom NetworkA88050 |  | Zone 3 - Road 23 - Telecom Network - TELECOM MANHOLE - Manhole Installation | 1d | 2026-12-13 | 2026-12-13 | RSZone 3Road 23Telecom NetworkA88050-old, RSZone 3Road 22Telecom NetworkA87900 |  | 76.4d | 76d | Contract Price Original Scope [1500.81 SAR]; Crane Operator [0.6 h]; Boom Truck Operator [0.6 h]; Equipment Operator [0.6 h]; Labour [12.81 h]; Telecom Manhole [0.1] | 1,500.81 |  | RD23 |
|  | 6 | **Saving Scope** |  | 2027-02-17 | 2027-05-18 |  |  |  |  |  |  |  |  |
|  | 11 | **Local Road** |  | 2027-03-04 | 2027-05-18 |  |  |  |  |  |  |  |  |
| Saving Works.10 |  | Dummy Duration | 55d | 2027-03-04 | 2027-05-17 | Milestone.7 |  | 0.4d | 0d |  |  |  | SAVING |
| Saving Works.1 |  | Saving Works | 1d | 2027-05-17 | 2027-05-18 | Saving Works.10 |  | 0.4d | 0.2d | Contract Price Original Scope [16401.1 SAR] | 16,401.14 |  | SAVING |
|  | 1 | **Telecom** |  | 2027-03-28 | 2027-05-18 |  |  |  |  |  |  |  |  |
| Saving Works.11 |  | Dummy Duration | 43d | 2027-03-28 | 2027-05-17 | Milestone.8 |  | 0.4d | 0d |  |  |  | SAVING |
| Saving Works.2 |  | Saving Works | 1d | 2027-05-17 | 2027-05-18 | Saving Works.11 |  | 0.4d | 0.2d | Contract Price Original Scope [1890145 SAR] | 1,890,145.28 |  | SAVING |
|  | 5 | **Potable Network** |  | 2027-03-18 | 2027-05-18 |  |  |  |  |  |  |  |  |
| Saving Works.15 |  | Dummy Duration | 48d | 2027-03-18 | 2027-05-17 | Milestone.9 |  | 0.2d | 0d |  |  |  | SAVING |
| Saving Works.3 |  | Saving Works | 1d | 2027-05-17 | 2027-05-18 | Saving Works.15 |  | 0.2d | 0d | Contract Price Original Scope [8236292 SAR] | 8,236,291.81 |  | SAVING |
|  | 7 | **Lateral Irrigation Network** |  | 2027-03-17 | 2027-05-18 |  |  |  |  |  |  |  |  |
| Saving Works.14 |  | Dummy Duration | 48d | 2027-03-17 | 2027-05-17 | Milestone.10 |  | 0.64d | 0d |  |  |  | SAVING |
| Saving Works.4 |  | Saving Works | 1d | 2027-05-17 | 2027-05-18 | Saving Works.14 |  | 0.64d | 0.44d | Contract Price Original Scope [3880975 SAR] | 3,880,974.58 |  | SAVING |
|  | 8 | **Drainage Network** |  | 2027-05-17 | 2027-05-18 |  |  |  |  |  |  |  |  |
| Saving Works.5 |  | Saving Works | 1d | 2027-05-17 | 2027-05-18 | Saving Works.8 SS |  | 0.6d | 0.4d | Contract Price Original Scope [5909274 SAR] | 5,909,273.61 |  | SAVING |
|  | 9 | **Sewage Network** |  | 2027-03-27 | 2027-05-18 |  |  |  |  |  |  |  |  |
| Saving Works.22 |  | Dummy Duration | 44d | 2027-03-27 | 2027-05-17 | Milestone.11 |  | 0.6d | 0d |  |  |  | SAVING |
| Saving Works.8 |  | Saving Works | 1d | 2027-05-17 | 2027-05-18 | Saving Works.22 |  | 0.6d | 0d | Contract Price Original Scope [18682174 SAR] | 18,682,174.49 |  | SAVING |
|  | 2 | **Pounds** |  | 2027-02-17 | 2027-05-18 |  |  |  |  |  |  |  |  |
| Saving Works.12 |  | Dummy Duration | 63d | 2027-02-17 | 2027-05-17 | Milestone.13, Milestone.13 FF |  | 0.21d | 0d |  |  |  | SAVING |
| Saving Works.6 |  | Saving Works | 1d | 2027-05-17 | 2027-05-18 | Saving Works.12 |  | 0.21d | 0.01d | Contract Price Original Scope [30076853 SAR] | 30,076,853.07 |  | SAVING |

| ID | WBS | Activity | Duration | Start | Finish | Predecessors | Total float | Free float | Resources | Cost | MODON |
| --- | --- | --- | --- | --- | --- | --- | --- | --- | --- | --- | --- |
|  | 3 | **Road Crossing** |  | 2027-03-25 | 2027-05-18 |  |  |  |  |  |  |
| Saving Works.9 |  | Dummy Duration | 45d | 2027-03-25 | 2027-05-17 | Milestone.14, Milestone.14 FF | 0.21d | 0d |  |  | SAVING |
| Saving Works.7 |  | Saving Works | 1d | 2027-05-17 | 2027-05-18 | Saving Works.9 | 0.21d | 0.01d | Contract Price Original Scope [913792 SAR] | 913,792 | SAVING |

## Activity codes

| Code | Value | Meaning |
| --- | --- | --- |
| MODON | ENG | Engineering |
| MODON | MS | Milestone |
| MODON | Pro | Procurement |
| MODON | RD10Z3 | RD10 |
