# Modon Revised Schedule 27-Oct-26

Schedule from Primavera P6, 2025-05-19 to 2027-08-23, data date 2026-10-24, costs in USD, A marks actual dates.
Must finish by 2027-05-20

## Calendars

- 7-Day Workweek-7: Mon-Sun 08:00-16:00.
- UADC02: Mon-Thu 07:00-17:00; Fri off; Sat-Sun 07:00-17:00. Exceptions (off unless hours are given): 2025-06-05, 2025-06-07 to 2025-06-08, 2025-09-23.

## Resources

| Resource | Group |
| --- | --- |
| Pre-Cast Cerb | material |
| MC1 | material |
| Binder | material |
| Wearing | material |
| UPVC Ducts | material |
| Road Crossing selves | material |
| Manhoule | material |
| HDPE Pipes | material |
| HDPE Fittings | material |
| Valves | material |
| Fire Hydrant | material |
| Valves chamber | material |
| beeding | material |
| Thrust Block | material |
| PUMPS | material |
| Tank | material |
| Genatrator | material |
| Coloration System | material |
| Network | material |
| Air Valves | material |
| UPVC PIPES | material |
| GRP PIPES | material |
| Control System | material |
| Inline Booster | material |
| Raked Bar ss 316 | material |
| Concerete Element Works | material |
| MCC | material |
| Light Works | material |
| Earthing | material |
| Interlock Works | material |
| Entrance Gate | material |
| Box culvert | material |
| Pipe culvert | material |
| Gully outfalls | material |
| Catch Basin | material |
| Swales | material |
| Drinage Champer | material |
| Open UPVC drainage pipes | material |
| Beeding Open UPVC drainage pipes | material |
| Geotextile | material |
| Collection sump | material |
| Cllearence | material |
| Excavation | material |
| D.Material | material |
| Backfilling | material |
| HDPE geomembrane waterproofing | material |
| Siphon pipework | material |
| Blinding Con. | material |
| raft Con. | material |
| Walls Con. | material |
| Seleves Pipes | material |
| Perimeter waterproof | material |
| Road Crossing | material |
| Phoenix Dactylifera | material |
| Shrubs and Vines, | material |
| Peltophorum Inerme | material |
| Atriplex canescens | material |
| Gravel | material |
| Clean Sand | material |
| Irrigation System | material |
| Main | material |
| Str Drawing | material |

## Schedule

| ID | WBS | Activity | Type | Duration | Start | Finish | Predecessors | Complete | Remaining | Planned start | Planned finish | Total float | Free float | Constraint | Calendar | Resources | Cost |
| --- | --- | --- | --- | --- | --- | --- | --- | --- | --- | --- | --- | --- | --- | --- | --- | --- | --- |
|  | 7 | **Part 02** |  |  | 2025-05-19 | 2027-06-12 |  |  |  |  |  |  |  |  |  |  |  |
|  | 1 | **MileStones** |  |  | 2025-05-19 | 2027-06-12 |  |  |  |  |  |  |  |  |  |  |  |
| A1850 |  | Project Start | milestone | 0d | 2025-05-19 A | 2025-05-19 A |  | 100% |  |  |  |  |  | start on 2025-05-19 |  |  |  |
| A2350 |  | T&C Finish Date | milestone | 0d | 2027-04-24 | 2027-04-24 | A2340, A2230, A2360, A2370 |  |  |  |  | -41.3d | 41.9d | finish on or before 2027-03-07 | UADC02 |  |  |
| A1860 |  | Revised Scope Finish date | milestone | 0d | 2027-05-06 | 2027-05-06 | A1060, A1020, A1240, A1230, A1280, A1310, A1370, A1360, A1400, A1840, A1730, A1700, A1620, A1510, A1940, A1960, A2160, A2260, A1080, A1070 |  |  |  |  | -82.4d | 37.6d | finish on or before 2027-02-12 |  |  |  |
| A1870 |  | Saving Scope Finish date | milestone | 0d | 2027-06-12 | 2027-06-12 | A2330, A2320 |  |  |  |  | -24d | 0d | finish on or before 2027-05-20 |  |  |  |
| A1880 |  | Project Finish | milestone | 0d | 2027-06-12 | 2027-06-12 | A1060, A1870, A2340, A2350, A1860 |  |  |  |  | -24d | 0d | finish on or before 2027-05-20 |  |  |  |
|  | 2 | **Revised Scope** |  |  | 2025-05-19 | 2027-05-06 |  |  |  |  |  |  |  |  |  |  |  |
|  | 7 | **Storm Network** |  |  | 2026-01-03 | 2027-04-18 |  |  |  |  |  |  |  |  |  |  |  |
| A2000 |  | Bedding |  | 250d | 2026-01-03 A | 2027-04-18 | A1390 SS, A1390 FF | 79% | 52.5d | 2026-01-03 | 2026-09-09 | 31.2d | 55.2d |  |  | beeding [6317] | 749,276.26 |
| A1920 |  | GRP Pipes |  | 150d | 2026-01-31 A | 2026-11-24 | A2000 SS+30d | 79% | 31.81d | 2026-01-31 | 2026-06-29 | 176.19d | 200.19d |  |  | GRP PIPES [156] | 104,418.07 |
| A1910 |  | UPVC |  | 110d | 2026-06-30 A | 2026-11-30 | A1920 | 66% | 37.4d | 2026-06-30 | 2026-10-17 | 170.6d | 194.6d |  |  | UPVC PIPES [10996] | 2,603,162.65 |
| A2020 |  | Beeding Open UPVC drainage pipes |  | 140d | 2026-06-30 A | 2026-10-26 | A1910 SS | 98% | 2.52d | 2026-06-30 | 2026-11-16 | 205.48d | 26.88d |  |  | Beeding Open UPVC drainage pipes [43410.8] | 3,170,663.11 |
| A2010 |  | Open UPVC drainage pipes |  | 140d | 2026-07-01 A | 2026-11-22 | A2020 SS+2d, A2020 FF | 79% | 29.4d | 2026-07-01 | 2026-11-18 | 178.6d | 202.6d |  |  | Open UPVC drainage pipes [43410.8] | 9,248,559.15 |
| A1990 |  | Drinage Champer |  | 110d | 2026-07-05 A | 2026-11-18 | A1910 SS+5d | 76% | 25.9d | 2026-07-05 | 2026-10-22 | 182.1d | 206.1d |  |  | Drinage Champer [68] | 1,212,475.66 |
| A1970 |  | Catch Basins |  | 110d | 2026-07-09 A | 2026-11-10 | A1990 SS+5d | 84% | 17.05d | 2026-07-09 | 2026-10-26 | 190.95d | 214.95d |  |  | Catch Basin [91] | 2,089,199.59 |
| A2030 |  | Geotextile |  | 140d | 2026-07-11 A | 2026-10-26 | A2010 SS+10d | 98% | 2.52d | 2026-07-11 | 2026-11-28 | 205.48d | 229.48d |  |  | Geotextile [43410.8] | 1,604,901.14 |
| A1980 |  | Swales |  | 140d | 2026-07-13 A | 2026-12-06 | A2030 SS+2d | 69% | 43.4d | 2026-07-13 | 2026-11-30 | 164.6d | 188.6d |  |  | Swales [315] | 1,596,669.61 |
| A1960 |  | Gully outfalls |  | 110d | 2026-07-14 A | 2026-11-10 | A1970 SS+5d | 84% | 17.58d | 2026-07-14 | 2026-10-31 | 94.42d | 176.82d |  |  | Gully outfalls [223] | 1,493,547.47 |
| A1950 |  | Manhoule |  | 160d | 2026-07-15 A | 2027-03-26 | A2040 SS | 4% | 153.6d | 2026-07-15 | 2026-12-21 | 54.4d | 78.4d |  |  | Manhoule [249.93] | 3,195,831.57 |
| A2040 |  | Collection sump |  | 160d | 2026-07-15 A | 2026-12-14 | A1980 SS+2d | 68% | 51.86d | 2026-07-15 | 2026-12-21 | 156.14d | 180.14d |  |  | Collection sump [332.85] | 8,457,492.76 |
| A1930 |  | Box Culvert |  | 160d | 2026-07-18 A | 2027-03-25 | A1950 SS+3d | 4% | 152.93d | 2026-07-18 | 2026-12-25 | -48.25d | 79.07d |  |  | Box culvert [1096.27] | 2,840,078.63 |
| A1940 |  | Pipes Culvert |  | 113d | 2026-10-24 | 2027-02-13 | A1930 SS+4d |  |  |  |  | -48.25d | 0d |  |  | Pipe culvert |  |
|  | 8 | **Ponds** |  |  | 2025-05-19 | 2027-02-06 |  |  |  |  |  |  |  |  |  |  |  |
| A2050 |  | Clearnce |  | 63d | 2025-05-19 A | 2026-07-20 A | A1850 | 100% |  | 2025-05-19 | 2025-07-20 |  |  |  |  | Cllearence [599343] | 1,624,219.53 |
| A2380 |  | Riprap |  | 444d | 2025-07-11 A | 2026-12-10 | A1850 | 89% | 47.42d | 2025-05-19 | 2026-08-05 | 24.58d | 18.58d |  |  | Str Drawing [2004] | 348,756.12 |
| A2110 |  | blinding & Walls Concerete |  | 60d | 2025-07-21 A | 2026-10-26 | A2050 | 95% | 3d | 2025-07-21 | 2025-09-18 | 205d | 229d |  |  | Blinding Con. [11.86] | 35,955.49 |
| A2120 |  | RAFT Concerete |  | 60d | 2025-09-19 A | 2026-10-26 | A2110 | 96% | 2.41d | 2025-09-19 | 2025-11-17 | 205.59d | 229.59d |  |  | raft Con. [58.4] | 58,926.18 |
| A2130 |  | Backfilling |  | 60d | 2025-11-25 A | 2026-11-08 | A2120 | 73% | 15.94d | 2025-11-18 | 2026-01-16 | 192.06d | 216.06d |  |  | Walls Con. [21.9] | 2,832,636.24 |
| A2140 |  | Power Floating |  | 60d | 2026-01-17 A | 2026-12-02 | A2130 | 34% | 39.6d | 2026-01-17 | 2026-03-17 | 168.4d | 192.4d |  |  | Seleves Pipes [35.05] | 203,346.43 |
| A2100 |  | Siphon pipework |  | 60d | 2026-03-18 A | 2026-10-28 | A2140 | 92% | 4.8d | 2026-03-18 | 2026-05-16 | 203.2d | 227.2d |  |  | Siphon pipework [11] | 243,239.15 |
| A2060 |  | Excavation |  | 120d | 2026-05-26 A | 2026-11-03 | A2080 SS+10d | 92% | 10.2d | 2026-05-26 | 2026-09-22 | 197.8d | 221.8d |  |  | Excavation [505044] | 7,742,309.19 |
| A2090 |  | HDPE geomembrane waterproofing |  | 120d | 2026-05-26 A | 2026-11-17 | A2080 SS+10d | 79% | 24.72d | 2026-05-26 | 2026-09-22 | 183.28d | 207.28d |  |  | HDPE geomembrane waterproofing [22873] | 1,093,100.67 |
| A2150 |  | Perimeter waterproof |  | 120d | 2026-06-04 A | 2026-11-12 | A2090 SS+10d | 84% | 19.2d | 2026-06-04 | 2026-10-01 | 52.8d | 46.8d |  |  | Perimeter waterproof [600] | 34,086 |
| A2070 |  | Disposal Material |  | 120d | 2026-06-23 A | 2026-10-26 | A2060 SS+30d | 98% | 2.08d | 2026-06-23 | 2026-10-20 | -24d | 0d |  |  | D.Material [505044] | 5,240,947.18 |
| A2080 |  | Filter |  | 60d | 2026-07-11 A | 2026-10-30 | A2100 | 89% | 6.41d | 2026-05-17 | 2026-07-15 | 201.59d | 225.59d |  |  | Backfilling [982] | 169,129.86 |
| A2160 |  | Entrance Rood |  | 40d | 2026-12-29 | 2027-02-06 | A2070, A2150, A2170, A2380 |  |  |  |  | 6d | 88.4d |  |  | Road Crossing [10218] | 580,484.58 |

Notes:
- A2000: Expenses: (New Expense Item) 749276
- A1920: Expenses: (New Expense Item) 104418
- A1910: Expenses: (New Expense Item) 2603163
- A2020: Expenses: (New Expense Item) 3170663
- A2010: Expenses: (New Expense Item) 9248559
- A1990: Expenses: (New Expense Item) 1212476
- A1970: Expenses: (New Expense Item) 2089200
- A2030: Expenses: (New Expense Item) 1604901
- A1980: Expenses: (New Expense Item) 1596670
- A1960: Expenses: (New Expense Item) 1493547
- A1950: Expenses: (New Expense Item) 3195832
- A2040: Expenses: (New Expense Item) 8457493
- A1930: Expenses: (New Expense Item) 2840079
- A1940: Expenses: (New Expense Item) 0
- A2050: Expenses: (New Expense Item) 1624220
- A2380: Expenses: (New Expense Item) 348756
- A2110: Expenses: (New Expense Item) 35955.5
- A2120: Expenses: (New Expense Item) 58926.2
- A2130: Expenses: (New Expense Item) 2832636
- A2140: Expenses: (New Expense Item) 203346
- A2100: Expenses: (New Expense Item) 243239
- A2060: Expenses: (New Expense Item) 7742309
- A2090: Expenses: (New Expense Item) 1093101
- A2150: Expenses: (New Expense Item) 34086
- A2070: Expenses: (New Expense Item) 5240947
- A2080: Expenses: (New Expense Item) 169130
- A2160: Expenses: (New Expense Item) 580485

| ID | WBS | Activity | Duration | Start | Finish | Predecessors | Complete | Remaining | Planned start | Planned finish | Total float | Free float | Resources | Cost |
| --- | --- | --- | --- | --- | --- | --- | --- | --- | --- | --- | --- | --- | --- | --- |
|  | 6 | **Sewage Network** |  | 2025-12-24 | 2027-04-18 |  |  |  |  |  |  |  |  |  |
| A1390 |  | Bedding | 260d | 2025-12-24 A | 2027-04-18 | A1150 SS+1d | 32% | 176.8d | 2025-12-24 | 2026-09-09 | 31.2d | 0d | beeding [1469.31] | 152,150.73 |
| A1320 |  | UPVC Pipes | 320d | 2025-12-29 A | 2027-03-20 | A1330 SS | 54% | 147.2d | 2025-12-29 | 2026-11-13 | 60.8d | 84.8d | UPVC PIPES [684.31] | 224,744.59 |
| A1330 |  | GRP Pipes | 320d | 2025-12-29 A | 2027-02-03 | A1390 SS+5d | 68% | 102.4d | 2025-12-29 | 2026-11-13 | 105.6d | 129.6d | GRP PIPES [50] | 38,007 |
| A1340 |  | HDPE Pipes | 320d | 2025-12-29 A | 2026-12-28 | A1320 SS | 79% | 65.73d | 2025-12-29 | 2026-11-13 | 142.27d | 166.27d | HDPE Pipes [856] | 263,382.46 |
| A1350 |  | HDPE Fitting | 320d | 2026-01-03 A | 2027-03-23 | A1340 SS+5d | 53% | 150.4d | 2026-01-03 | 2026-11-18 | 57.6d | 81.6d | HDPE Fittings [19] | 32,276.72 |
| A1380 |  | Manhoule | 200d | 2026-04-20 A | 2027-02-03 | A1330 SS+120d | 49% | 102.92d | 2026-04-20 | 2026-11-05 | 105.08d | 129.08d | Manhoule [144.6] | 5,381,600.69 |
| A1370 |  | Valve Champer | 38d | 2026-07-30 A | 2026-11-20 | A1380 | 26% | 27.96d | 2026-11-06 | 2026-12-13 | 84.04d | 166.44d | Valves chamber [13] | 395,373.58 |
| A1400 |  | Thurst Block | 30d | 2026-07-30 A | 2026-11-18 | A1350 | 16% | 25.2d | 2026-11-19 | 2026-12-18 | 4.55d | 6.7d | Thrust Block [19] | 20,054.91 |
| A1360 |  | Valves | 30d | 2026-10-24 | 2026-11-22 | A1400 SS |  |  |  |  | 82d | 164.4d | Valves [32] | 248,557.35 |
|  | 1 | **Pump Station (PS01)** |  | 2026-05-16 | 2026-12-25 |  |  |  |  |  |  |  |  |  |
| A1470 |  | MCC Buildingn ( Civil Work ) | 60d | 2026-05-16 A | 2026-08-16 A | A1560 | 100% |  | 2026-05-16 | 2026-07-15 |  |  | MCC [79] | 243,554.13 |
| A1450 |  | Fual System Tank | 25d | 2026-07-30 A | 2026-11-15 | A1460 | 9% | 22.75d | 2026-09-13 | 2026-10-08 | 145.25d | 0d | Tank [1] | 1,782,129.83 |
| A1480 |  | Light Poles | 15d | 2026-07-30 A | 2026-08-19 A | A1430, A1420, A1500 | 100% |  | 2026-11-17 | 2026-12-02 |  |  | Light Works [1] | 315,300.21 |
| A1420 |  | Odor System | 60d | 2026-10-24 | 2026-12-22 | A1470 |  |  |  |  | 148d | 172d | Control System [1] | 227,015.54 |
| A1460 |  | Concrete Element Works | 60d | 2026-10-24 | 2026-12-22 | A1470 |  |  |  |  | 148d | 172d | Concerete Element Works [1.56] | 283,290.96 |
| A1510 |  | Interlock Paving | 13d | 2026-10-24 | 2026-11-05 | A1480 |  |  |  |  | 16.75d | 18.9d | Interlock Works [695] | 59,533.7 |
| A1440 |  | Raked bar SS 316 (35 mm) | 15d | 2026-11-15 | 2026-11-30 | A1450 |  |  |  |  | 145.25d | 0d | Raked Bar ss 316 [1] | 8,828.43 |
| A1490 |  | UPVC Ducts | 15d | 2026-11-15 | 2026-11-30 | A1450 |  |  |  |  | 155.25d | 0d | UPVC Ducts [94] | 9,768.54 |
| A1410 |  | Pumps | 15d | 2026-11-30 | 2026-12-15 | A1440 |  |  |  |  | 145.25d | 0d | PUMPS [1] | 3,440,186.1 |
| A1500 |  | Earthing | 15d | 2026-11-30 | 2026-12-15 | A1490 |  |  |  |  | 155.25d | 179.25d | Earthing [10] | 16,144.22 |
| A1430 |  | In-line Booste Station | 10d | 2026-12-15 | 2026-12-25 | A1410 |  |  |  |  | 145.25d | 169.25d | Inline Booster [1] | 236,475.38 |
|  | 2 | **Pump Station (PS02)** |  | 2026-03-17 | 2027-01-06 |  |  |  |  |  |  |  |  |  |
| A1560 |  | Entrance Gate | 60d | 2026-03-17 A | 2026-06-11 A | A1570 SS, A1090 SS+90d | 100% |  | 2026-03-17 | 2026-05-16 |  |  | Entrance Gate [3] | 53,600.37 |
| A1570 |  | Concrete Element Works | 60d | 2026-03-17 A | 2026-12-04 | A1090 SS+90d | 30% | 41.93d | 2026-03-17 | 2026-05-16 | 166.07d | 190.07d | Concerete Element Works [1.66] | 443,629.94 |
| A1580 |  | MCC Buildingn ( Civil Work ) | 60d | 2026-06-13 A | 2026-08-16 A | A1570, A1560 FS+30d | 100% |  | 2026-06-13 | 2026-08-12 |  |  | MCC [207.77] | 551,986.37 |
| A1590 |  | Light Poles | 23d | 2026-07-30 A | 2026-08-19 A | A1540 SS | 100% |  | 2026-10-26 | 2026-11-18 |  |  | Light Works [1] | 315,300.21 |
| A1540 |  | In-line Booste Station | 25d | 2026-07-31 A | 2026-11-16 | A1520, A1530 | 6% | 23.62d | 2026-10-26 | 2026-11-20 | 184.38d | 208.38d | Inline Booster [1] | 2,601,224.72 |
| A1550 |  | Valves | 15d | 2026-08-25 A | 2026-10-30 | A1520 | 57% | 6.52d | 2027-01-19 | 2027-02-02 | -1.77d | 0d | Valves [1] | 21,755.78 |
| A1530 |  | Odor System | 60d | 2026-09-01 A | 2026-11-22 | A1580 | 50% | 30d | 2026-11-05 | 2027-01-03 | 178d | 202d | Control System [1] | 227,015.54 |
| A1600 |  | UPVC Ducts | 30d | 2026-10-24 | 2026-11-22 | A1580 |  |  |  |  | 133d | 0d | UPVC Ducts [25] | 2,592.5 |
| A1620 |  | Interlock Paving | 25d | 2026-10-30 | 2026-11-24 | A1590, A1550 |  |  |  |  | -1.77d | 0.38d | Interlock Works [720] | 61,675.2 |
| A1610 |  | Earthing | 30d | 2026-11-23 | 2026-12-22 | A1600 |  |  |  |  | 133d | 0d | Earthing [10] | 16,144.22 |
| A1520 |  | Pumps | 15d | 2026-12-23 | 2027-01-06 | A1610 |  |  |  |  | 133d | 157d | PUMPS [1] | 1,655,324.99 |

Notes:
- A1390: Expenses: (New Expense Item) 152151
- A1320: Expenses: (New Expense Item) 224745
- A1330: Expenses: (New Expense Item) 38007
- A1340: Expenses: (New Expense Item) 263382
- A1350: Expenses: (New Expense Item) 32276.7
- A1380: Expenses: (New Expense Item) 5381601
- A1370: Expenses: (New Expense Item) 395374
- A1400: Expenses: (New Expense Item) 20054.9
- A1360: Expenses: (New Expense Item) 248557
- A1470: Expenses: (New Expense Item) 243554
- A1450: Expenses: (New Expense Item) 1782130
- A1480: Expenses: (New Expense Item) 315300
- A1420: Expenses: (New Expense Item) 227016
- A1460: Expenses: (New Expense Item) 283291
- A1510: Expenses: (New Expense Item) 59533.7
- A1440: Expenses: (New Expense Item) 8828.43
- A1490: Expenses: (New Expense Item) 9768.54
- A1410: Expenses: (New Expense Item) 3440186
- A1500: Expenses: (New Expense Item) 16144.2
- A1430: Expenses: (New Expense Item) 236475
- A1560: Expenses: (New Expense Item) 53600.4
- A1570: Expenses: (New Expense Item) 443630
- A1580: Expenses: (New Expense Item) 551986
- A1590: Expenses: (New Expense Item) 315300
- A1540: Expenses: (New Expense Item) 2601225
- A1550: Expenses: (New Expense Item) 21755.8
- A1530: Expenses: (New Expense Item) 227016
- A1600: Expenses: (New Expense Item) 2592.5
- A1620: Expenses: (New Expense Item) 61675.2
- A1610: Expenses: (New Expense Item) 16144.2
- A1520: Expenses: (New Expense Item) 1655325

| ID | WBS | Activity | Duration | Start | Finish | Predecessors | Complete | Remaining | Planned start | Planned finish | Total float | Free float | Resources | Cost |
| --- | --- | --- | --- | --- | --- | --- | --- | --- | --- | --- | --- | --- | --- | --- |
|  | 3 | **Pump Station (PS03)** |  | 2026-05-19 | 2026-12-22 |  |  |  |  |  |  |  |  |  |
| A1690 |  | MCC Buildingn ( Civil Work ) | 50d | 2026-05-19 A | 2026-08-16 A | A1560 | 100% |  | 2026-05-16 | 2026-07-05 |  |  | MCC [174] | 413,258.42 |
| A1680 |  | Concrete Element Works | 60d | 2026-07-05 A | 2026-11-26 | A1690 | 45% | 33.12d | 2026-07-05 | 2026-09-03 | 148d | 198.88d | Concerete Element Works [1.34] | 700,016.43 |
| A1650 |  | In-line Booste Station | 20d | 2026-07-30 A | 2026-11-11 | A1630 | 6% | 18.9d | 2026-11-12 | 2026-12-02 | -2.15d | 0d | Inline Booster [1] | 2,601,224.72 |
| A1700 |  | Light Poles | 10d | 2026-07-30 A | 2026-08-20 A | A1650, A1660 | 100% |  | 2026-12-02 | 2026-12-12 |  |  | Light Works [1] | 315,300.21 |
| A1640 |  | Odor System | 20d | 2026-08-30 A | 2026-11-02 | A1670 | 50% | 10d | 2026-11-05 | 2026-11-24 | 148d | 0d | Control System [1] | 227,015.54 |
| A1670 |  | Entrance Gates | 60d | 2026-10-24 | 2026-12-22 | A1680 SS |  |  |  |  | 148d | 172d | Entrance Gate [2] | 30,898.91 |
| A1710 |  | UPVC Ducts | 20d | 2026-11-03 | 2026-11-22 | A1640 |  |  |  |  | 148d | 0d | UPVC Ducts [40] | 4,148 |
| A1730 |  | Interlock Paving | 13d | 2026-11-11 | 2026-11-24 | A1650 |  |  |  |  | -2.15d | 0d | Interlock Works [618] | 52,937.88 |
| A1720 |  | Earthing | 15d | 2026-11-23 | 2026-12-07 | A1710 |  |  |  |  | 148d | 0d | Earthing [10] | 16,144.22 |
| A1630 |  | Pumps | 15d | 2026-12-08 | 2026-12-22 | A1720 |  |  |  |  | 148d | 172d | PUMPS [1] | 3,678,499.17 |
| A1660 |  | Valves | 15d | 2027-08-23 A | 2026-10-30 | A1630 | 57% | 6.51d | 2027-01-14 | 2027-01-28 | 201.49d | 225.49d | Valves [1] | 21,755.78 |
|  | 4 | **Pump Station (PS04)** |  | 2026-04-14 | 2026-12-30 |  |  |  |  |  |  |  |  |  |
| A1900 |  | Entrance Gates | 30d | 2026-04-14 A | 2026-08-22 A | A1560 SS+30d | 100% |  | 2026-04-14 | 2026-05-14 |  |  | Entrance Gate [2] | 30,898.91 |
| A1800 |  | MCC Buildingn ( Civil Work ) | 60d | 2026-05-17 A | 2026-10-24 | A1900 SS+35d | 99% | 0.36d | 2026-05-17 | 2026-07-16 | 177.64d | 26.94d | MCC [163] | 450,721.62 |
| A1810 |  | Light Poles | 10d | 2026-07-30 A | 2026-08-25 A | A1760, A1830 | 100% |  | 2026-11-16 | 2026-11-26 |  |  | Light Works [1] | 315,300.21 |
| A1890 |  | Fual System Tank | 30d | 2026-07-30 A | 2026-11-20 | A1790 | 9% | 27.3d | 2026-09-07 | 2026-10-07 | 140.7d | 0d | Tank [1] | 1,391,029.13 |
| A1750 |  | Odor System | 45d | 2026-08-23 A | 2026-11-15 | A1800 | 50% | 22.5d | 2026-11-05 | 2026-12-19 | 175.5d | 34.8d | Control System [1] | 227,015.54 |
| A1770 |  | Valves | 10d | 2026-08-26 A | 2026-10-29 | A1740 | 46% | 5.36d | 2026-11-05 | 2026-11-14 | 11.39d | 0d | Valves [1] | 26,485.29 |
| A1790 |  | Concrete Element Works | 60d | 2026-10-24 | 2026-12-22 | A1900 FS+60d |  |  |  |  | 148d | 172d | Concerete Element Works [2] | 537,725.08 |
| A1840 |  | Interlock Paving | 13d | 2026-10-29 | 2026-11-11 | A1810, A1770 |  |  |  |  | 11.39d | 13.54d | Interlock Works [246] | 21,072.36 |
| A1780 |  | Raked bar SS 316 (35 mm) | 15d | 2026-11-20 | 2026-12-05 | A1890 |  |  |  |  | 140.7d | 0d | Raked Bar ss 316 [1] | 31,530.11 |
| A1820 |  | UPVC Ducts | 15d | 2026-11-20 | 2026-12-05 | A1800, A1890 |  |  |  |  | 150.7d | 0d | UPVC Ducts [40] | 4,148 |
| A1740 |  | Pumps | 15d | 2026-12-05 | 2026-12-20 | A1780 |  |  |  |  | 140.7d | 0d | PUMPS [1.39] | 1,576,516.58 |
| A1830 |  | Earthing | 15d | 2026-12-05 | 2026-12-20 | A1820 |  |  |  |  | 150.7d | 174.7d | Earthing [10] | 16,144.22 |
| A1760 |  | In-line Booste Station | 10d | 2026-12-20 | 2026-12-30 | A1750, A1740 |  |  |  |  | 140.7d | 164.7d | Inline Booster [1] | 1,024,724.56 |

Notes:
- A1690: Expenses: (New Expense Item) 413258
- A1680: Expenses: (New Expense Item) 700016
- A1650: Expenses: (New Expense Item) 2601225
- A1700: Expenses: (New Expense Item) 315300
- A1640: Expenses: (New Expense Item) 227016
- A1670: Expenses: (New Expense Item) 30898.9
- A1710: Expenses: (New Expense Item) 4148
- A1730: Expenses: (New Expense Item) 52937.9
- A1720: Expenses: (New Expense Item) 16144.2
- A1630: Expenses: (New Expense Item) 3678499
- A1660: Expenses: (New Expense Item) 21755.8
- A1900: Expenses: (New Expense Item) 30898.9
- A1800: Expenses: (New Expense Item) 450722
- A1810: Expenses: (New Expense Item) 315300
- A1890: Expenses: (New Expense Item) 1391029
- A1750: Expenses: (New Expense Item) 227016
- A1770: Expenses: (New Expense Item) 26485.3
- A1790: Expenses: (New Expense Item) 537725
- A1840: Expenses: (New Expense Item) 21072.4
- A1780: Expenses: (New Expense Item) 31530.1
- A1820: Expenses: (New Expense Item) 4148
- A1740: Expenses: (New Expense Item) 1576517
- A1830: Expenses: (New Expense Item) 16144.2
- A1760: Expenses: (New Expense Item) 1024725

| ID | WBS | Activity | Duration | Start | Finish | Predecessors | Complete | Remaining | Planned start | Planned finish | Total float | Free float | Constraint | Resources | Cost |
| --- | --- | --- | --- | --- | --- | --- | --- | --- | --- | --- | --- | --- | --- | --- | --- |
|  | 4 | **Potable Water Network** |  | 2025-12-23 | 2027-03-06 |  |  |  |  |  |  |  |  |  |  |
| A1150 |  | Sand Bedding & Covr | 220d | 2025-12-23 A | 2026-11-02 | A1090 SS | 96% | 9.24d | 2025-12-23 | 2026-07-31 | 198.76d | 222.76d |  | beeding [2962.02] | 52,947.7 |
| A1100 |  | HDPE Pipes | 250d | 2025-12-24 A | 2026-11-14 | A1150 SS+1d | 92% | 21.25d | 2025-12-24 | 2026-08-30 | 86.75d | 10.89d |  | HDPE Pipes [2962.02] | 1,851,709.67 |
| A1210 |  | Water Tank | 200d | 2026-02-12 A | 2026-11-25 | A1100 SS+48d, A1100 FF | 84% | 32.14d | 2026-02-12 | 2026-08-30 | 75.86d | 0d |  | Tank [0.57] | 8,472,030.24 |
| A1110 |  | HDPE Fitting | 150d | 2026-04-15 A | 2026-12-25 | A1100 SS+120d | 58% | 62.7d | 2026-04-15 | 2026-09-11 | 145.3d | 169.3d |  | HDPE Fittings [256] | 526,461.84 |
| A1160 |  | Thrust Block | 90d | 2026-06-11 A | 2026-12-03 | A1110 SS+62d | 55% | 40.68d | 2026-06-11 | 2026-09-09 | 167.32d | 191.32d |  | Thrust Block [188] | 627,441.38 |
| A1220 |  | Generator | 149d | 2026-06-14 A | 2027-03-06 | A1210 SS+130d | 11% | 133.35d | 2026-06-14 | 2026-11-09 | 74.65d | 98.65d |  | Genatrator [3] | 9,180,791.7 |
| A1120 |  | Valves | 165d | 2026-06-16 A | 2026-12-23 | A1160 SS+5d | 63% | 60.34d | 2026-06-16 | 2026-11-28 | 147.66d | 171.66d |  | Valves [499] | 2,300,902.87 |
| A1130 |  | Fire Hydrant | 30d | 2026-07-13 A | 2026-10-27 | A1110 | 90% | 3.01d | 2026-09-12 | 2026-10-11 | 204.99d | 228.99d | start on or after 2026-09-12 | Fire Hydrant [279] | 3,870,516.78 |
| A1240 |  | Street Lighting | 112d | 2026-07-30 A | 2027-01-02 | A1210 | 37% | 70.28d | 2026-08-31 | 2026-12-20 | 41.72d | 124.12d |  | Network [1] | 788,250.08 |
| A1140 |  | Valve Champer | 15d | 2026-08-03 A | 2026-11-03 | A1130 | 27% | 10.91d | 2026-10-12 | 2026-10-26 | 11.09d | 0d |  | Valves chamber [325.65] | 4,238,202.38 |
| A1230 |  | Coloration System | 23d | 2026-08-10 A | 2026-10-29 | A1190, A1120, A1220 | 75% | 5.75d | 2026-12-09 | 2026-12-31 | 29.75d | 188.65d |  | Coloration System [1] | 851,309.4 |
| A1200 |  | Pump Building | 60d | 2026-11-25 | 2027-01-24 | A1210 |  |  |  |  | 75.86d | 0d |  | PUMPS [1] | 42,565.49 |
| A1170 |  | Fire Fighting Pump | 10d | 2027-01-24 | 2027-02-03 | A1200, A1140 |  |  |  |  | 75.86d | 0d |  | PUMPS [6.41] | 2,317,808.95 |
| A1180 |  | Surge vessel Fual System Tank | 20d | 2027-02-03 | 2027-02-23 | A1170 |  |  |  |  | 75.86d | 0d |  | Tank [1] | 46,349.72 |
| A1190 |  | Surge vessel Valve | 10d | 2027-02-23 | 2027-03-05 | A1180 |  |  |  |  | 75.86d | 99.86d |  | Valves [0.59] | 271,877.41 |
|  | 5 | **Irrigation Network** |  | 2026-02-12 | 2027-02-18 |  |  |  |  |  |  |  |  |  |  |
| A1300 |  | Bedding | 170d | 2026-02-12 A | 2026-11-06 | A1210 SS | 92% | 13.6d | 2026-02-12 | 2026-07-31 | 194.4d | 218.4d |  | beeding [5022] | 117,510.68 |
| A1250 |  | HDPE Pipes | 210d | 2026-02-22 A | 2026-11-11 | A1300 SS+10d | 91% | 18.75d | 2026-02-22 | 2026-09-19 | 189.25d | 213.25d |  | HDPE Pipes [5022] | 1,090,193.5 |
| A1260 |  | HDPE Fitting | 210d | 2026-03-03 A | 2027-01-24 | A1250 SS+10d | 56% | 92.4d | 2026-03-03 | 2026-09-28 | 115.6d | 139.6d |  | HDPE Fittings [415] | 489,595.58 |
| A1270 |  | Valves | 200d | 2026-04-28 A | 2026-12-14 | A1260 SS+60d | 74% | 52d | 2026-04-28 | 2026-11-13 | 156d | 180d |  | Valves [958] | 1,357,806.3 |
| A1290 |  | Flow meter Valves | 200d | 2026-05-07 A | 2027-02-18 | A1270 SS+10d | 41% | 117.24d | 2026-05-07 | 2026-11-22 | 90.76d | 114.76d |  | Air Valves [12] | 365,474.57 |
| A1280 |  | Valve Champer | 140d | 2026-06-04 A | 2026-12-07 | A1290 SS+30d | 68% | 44.8d | 2026-06-04 | 2026-10-21 | 67.2d | 149.6d |  | Valves chamber [66.25] | 1,792,422.14 |
| A1310 |  | Thrust Block | 160d | 2026-06-18 A | 2027-01-08 | A1290 SS+45d | 52% | 76.78d | 2026-06-18 | 2026-11-24 | -48.03d | 0.22d |  | Thrust Block [273] | 279,962.24 |

Notes:
- A1150: Expenses: (New Expense Item) 52947.7
- A1100: Expenses: (New Expense Item) 1851710
- A1210: Expenses: (New Expense Item) 8472030
- A1110: Expenses: (New Expense Item) 526462
- A1160: Expenses: (New Expense Item) 627441
- A1220: Expenses: (New Expense Item) 9180792
- A1120: Expenses: (New Expense Item) 2300903
- A1130: Expenses: (New Expense Item) 3870517
- A1240: Expenses: (New Expense Item) 788250
- A1140: Expenses: (New Expense Item) 4238202
- A1230: Expenses: (New Expense Item) 851309
- A1200: Expenses: (New Expense Item) 42565.5
- A1170: Expenses: (New Expense Item) 2317809
- A1180: Expenses: (New Expense Item) 46349.7
- A1190: Expenses: (New Expense Item) 271877
- A1300: Expenses: (New Expense Item) 117511
- A1250: Expenses: (New Expense Item) 1090194
- A1260: Expenses: (New Expense Item) 489596
- A1270: Expenses: (New Expense Item) 1357806
- A1290: Expenses: (New Expense Item) 365475
- A1280: Expenses: (New Expense Item) 1792422
- A1310: Expenses: (New Expense Item) 279962

| ID | WBS | Activity | Duration | Start | Finish | Predecessors | Complete | Remaining | Planned start | Planned finish | Total float | Free float | Calendar | Resources | Cost |
| --- | --- | --- | --- | --- | --- | --- | --- | --- | --- | --- | --- | --- | --- | --- | --- |
|  | 9 | **Road Crossing** |  | 2026-03-18 | 2026-12-28 |  |  |  |  |  |  |  |  |  |  |
| A2170 |  | Rood Crossing UPVC Selves | 160d | 2026-03-18 A | 2026-12-28 | A2140 | 59% | 66d | 2026-03-18 | 2026-08-24 | 6d | 0d |  | Road Crossing selves [1495] | 1,094,032.78 |
|  | 2 | **Road Works** |  | 2026-11-03 | 2027-02-01 |  |  |  |  |  |  |  |  |  |  |
| A1030 |  | MC1 | 20d | 2026-11-03 | 2026-11-23 | A1140 |  |  |  |  | 11.09d | 0d |  | MC1 [142] | 769.77 |
| A1040 |  | Binder Course | 20d | 2026-11-23 | 2026-12-13 | A1030 |  |  |  |  | 11.09d | 0d |  | Binder [46] | 46,800.49 |
| A1050 |  | Wearing Couse | 20d | 2026-12-13 | 2027-01-02 | A1040 |  |  |  |  | 11.09d | 0d |  | Wearing [73] | 73,203.97 |
| A1060 |  | Pre-Cast Cerb | 30d | 2027-01-02 | 2027-02-01 | A1050 |  |  |  |  | 11.09d | 93.49d |  | Pre-Cast Cerb [238] | 17,150.53 |
|  | 1 | **Hard Scape ( Curbstone )** |  | 2026-08-06 | 2027-01-14 |  |  |  |  |  |  |  |  |  |  |
| A1020 |  | Pre-Cast Cerb | 120d | 2026-08-06 A | 2027-01-14 | A1300 SS+60d | 31% | 82.51d | 2026-08-06 | 2026-12-03 | 29.49d | 111.89d |  | Pre-Cast Cerb [9616.06] | 763,034.65 |
|  | 10 | **Secondary Irrigation Network** |  | 2026-10-26 | 2027-01-05 |  |  |  |  |  |  |  |  |  |  |
| A2240 |  | Clean Sand | 15.93d | 2026-10-26 | 2026-11-10 | A2070 |  |  |  |  | -24d | 0d |  | Clean Sand [853] | 100,784.36 |
| A2220 |  | Gravel 150 mm | 10d | 2026-11-11 | 2026-11-20 | A2240 |  |  |  |  | -24d | 0d |  | Gravel [298] | 41,338.14 |
| A2250 |  | Irrigation System | 15d | 2026-11-21 | 2026-12-05 | A2220 |  |  |  |  | -24d | 0d |  | Irrigation System [4195] | 2,696,877.35 |
| A2180 |  | Phoenix Dactylifera | 15d | 2026-12-06 | 2026-12-20 | A2250 |  |  |  |  | -24d | 0d |  | Phoenix Dactylifera [762] | 2,549,692.23 |
| A2190 |  | Shrubs and Vines, | 15d | 2026-12-06 | 2026-12-20 | A2210 SS |  |  |  |  | -24d | 0d |  | Shrubs and Vines, |  |
| A2200 |  | Peltophorum Inerme | 15d | 2026-12-06 | 2026-12-20 | A2180 SS |  |  |  |  | -24d | 0d |  | Peltophorum Inerme [162] | 572,037.93 |
| A2210 |  | Atriplex canescens | 15d | 2026-12-06 | 2026-12-20 | A2200 SS |  |  |  |  | -24d | 0d |  | Atriplex canescens [200] | 45,446.21 |
| A2260 |  | Maintance | 16d | 2026-12-21 | 2027-01-05 | A2190 |  |  |  |  | -24d | 0d |  | Main [826] | 1,875,438.84 |
|  | 3 | **Telecom** |  | 2025-12-23 | 2027-05-06 |  |  |  |  |  |  |  |  |  |  |
| A1090 |  | Manhole | 220d | 2025-12-23 A | 2026-11-03 | A1850 | 95% | 10.05d | 2025-12-23 | 2026-07-31 | 197.95d | 221.95d |  | Manhoule [444] | 6,663,583.08 |
| A1070 |  | Duct Bank | 360d | 2026-02-17 A | 2027-05-06 | A1090 SS | 46% | 194.4d | 2026-02-17 | 2027-02-12 | -82.4d | 0d |  | UPVC Ducts [56870] | 13,861,818.71 |
| A1080 |  | Road Crossing | 361d | 2026-02-17 A | 2026-11-19 | A1070 SS | 93% | 26.03d | 2026-02-17 | 2027-02-13 | 85.97d | 168.37d |  | Road Crossing selves [2800] | 1,219,484 |
|  | 12 | **Testing & Comissioning** |  | 2026-10-24 | 2027-04-24 |  |  |  |  |  |  |  |  |  |  |
| A2230 |  | Potable Water T&C | 90d | 2026-10-24 | 2027-02-04 | A1230 SS |  |  |  |  | 25.7d | 67d | UADC02 |  |  |
| A2360 |  | Seweage Testing & Comissiong | 90d | 2026-11-24 | 2027-03-09 | A1840, A1730, A1620, A1510, A1400 |  |  |  |  | -2.12d | 39.18d | UADC02 |  |  |
| A2340 |  | Lateral Irrigation Network T&C | 91d | 2027-01-09 | 2027-04-24 | A1310 |  |  |  |  | -41.3d | 0d | UADC02 |  |  |
| A2370 |  | Drainage Network T&C | 60d | 2027-02-13 | 2027-04-24 | A1940 |  |  |  |  | -41.2d | 0.1d | UADC02 |  |  |

Notes:
- A2170: Expenses: (New Expense Item) 1094033
- A1030: Expenses: (New Expense Item) 769.77
- A1040: Expenses: (New Expense Item) 46800.5
- A1050: Expenses: (New Expense Item) 73204
- A1060: Expenses: (New Expense Item) 17150.5
- A1020: Expenses: (New Expense Item) 763035
- A2240: Expenses: (New Expense Item) 100784
- A2220: Expenses: (New Expense Item) 41338.1
- A2250: Expenses: (New Expense Item) 2696877
- A2180: Expenses: (New Expense Item) 2549692
- A2190: Expenses: (New Expense Item) 0
- A2200: Expenses: (New Expense Item) 572038
- A2210: Expenses: (New Expense Item) 45446.2
- A2260: Expenses: (New Expense Item) 1875439
- A1090: Expenses: (New Expense Item) 6663583
- A1070: Expenses: (New Expense Item) 13861819
- A1080: Expenses: (New Expense Item) 1219484

| ID | WBS | Activity | Duration | Start | Finish | Predecessors | Total float | Free float | Cost |
| --- | --- | --- | --- | --- | --- | --- | --- | --- | --- |
|  | 3 | **Saving Scope** |  | 2027-01-06 | 2027-06-12 |  |  |  |  |
|  | 11 | **General Works** |  | 2027-01-06 | 2027-02-04 |  |  |  |  |
| A2280 |  | Saving Works | 30d | 2027-01-06 | 2027-02-04 | A2260 | -24d | 0d | 1,386,106.41 |
|  | 1 | **Local Road** |  | 2027-02-05 | 2027-02-19 |  |  |  |  |
| A2290 |  | Saving Works | 15d | 2027-02-05 | 2027-02-19 | A2280 | -24d | 0d | 779,435.79 |
|  | 5 | **Lateral Irrigation Network** |  | 2027-02-20 | 2027-04-05 |  |  |  |  |
| A2300 |  | Saving Works | 45d | 2027-02-20 | 2027-04-05 | A2290 | -24d | 0d | 1,314,624.27 |
|  | 7 | **Drainage Network** |  | 2027-04-06 | 2027-05-24 |  |  |  |  |
| A2310 |  | Saving Works | 49d | 2027-04-06 | 2027-05-24 | A2300 | -24d | 0d | 11,292,592.97 |
|  | 8 | **Pounds** |  | 2027-04-06 | 2027-06-12 |  |  |  |  |
| A2320 |  | Saving Works | 68d | 2027-04-06 | 2027-06-12 | A2310 SS, A2310 FF | -24d | 0d | 51,481,465.41 |
|  | 9 | **Road Crossing** |  | 2027-04-06 | 2027-06-12 |  |  |  |  |
| A2330 |  | Saving Works | 68d | 2027-04-06 | 2027-06-12 | A2300 | -24d | 0d | 3,351,680.43 |

Notes:
- A2280: Expenses: (New Expense Item) 1386106
- A2290: Expenses: (New Expense Item) 779436
- A2300: Expenses: (New Expense Item) 1314624
- A2310: Expenses: (New Expense Item) 11292593
- A2320: Expenses: (New Expense Item) 51481465
- A2330: Expenses: (New Expense Item) 3351680
