# 44 READY BUILT FACTORIES 900 m2 IN AL DAMMAM #3

Schedule from Primavera P6, 2026-01-07 to 2027-03-06, data date 2026-10-13, costs in USD, A marks actual dates.

## Calendars

- HAL1-05-1: Mon-Thu 08:00-12:00, 14:00-18:00; Fri off; Sat-Sun 08:00-12:00, 14:00-18:00. Exceptions (off unless hours are given): 2026-02-17 05:00-13:00, 2026-02-18 to 2026-02-19 05:00-12:00, 2026-02-21 05:00-12:00, 2026-02-22, 2026-02-23 to 2026-02-26 05:00-12:00, 2026-02-28 05:00-12:00, 2026-03-01 to 2026-03-05 05:00-13:00, 2026-03-07 to 2026-03-12 05:00-13:00, 2026-03-14 to 2026-03-16 05:00-13:00, 2026-03-17 to 2026-03-19, 2026-05-26 to 2026-05-28, 2026-09-23, 2027-02-22.

## Resources

| Resource | Group | Rate | Notes |
| --- | --- | --- | --- |
| Engineer | labor |  | ï»¿ |
| Draftman | labor |  | ï»¿ |
| Surveyor | labor |  | ï»¿ |
| POKLIN | equipment |  | ? |
| Dump Truck | equipment |  | ?? |
| Helper | labor |  | ?? |
| DUMP TRUCK DRIVER | labor |  | ? |
| POKLIN OPERATOR | labor |  | ? |
| CRANE | equipment |  | ? |
| Mason | labor |  | ?? |
| Plumber | labor |  | ?? |
| Electrician | labor |  | ?? |
| AC Technician | labor |  | ï»¿ |
| STEEL FIXER | labor |  | ? |
| Carpenter | labor |  | ?? |
| Purchaser | labor |  | ï»¿ |
| Construction Cost | material | 1 | ï»¿ |
| Engineer | labor |  | ï»¿ |
| Loading workers | labor |  | ï»¿ |
| Unloading workers | labor |  | ï»¿ |
| Draftman | labor |  | ï»¿ |
| General Labour | labor |  | ?? |
| Pipe Fitter | labor |  | ï»¿ |
| Plumber | labor |  | ? |
| Pipe Fitter | labor |  | ? |
| Mason | labor |  | ?? |
| Carperter | labor |  | ?? |
| Steel Fixer | labor |  | ?? |
| Concrete Mixer | equipment |  | ?? |
| Equipment Operator | labor |  | ï»¿ |
| Painter | labor |  | ? |
| Truck | equipment |  | ?? |
| Mini Roller Compactor | equipment |  | ? |
| Wheel Loader | equipment |  |  |
| Tile Fixer | labor |  | ? |
| AC Technician | labor |  | ? |
| Ductman | labor |  | ? |
| Electrician | labor |  | ? |
| Structural Steel Fixer | labor |  | ? |
| Mobile Crane | equipment |  | ? |
| AAC panel erector | labor |  | ï»¿ |
| Sandwich panel worker | labor |  | ï»¿ |
| Roof sheet worker | labor |  | ï»¿ |
| Motor Grader | equipment |  | ï»¿ |
| Roller Compactor | equipment |  | ï»¿ |
| Paver | equipment |  | ? |
| Excavator | equipment |  | ?? |
| Mobile Crane | equipment |  |  |
| Electrician | labor |  | ï»¿ |
| Excavator | equipment |  | ?? |
| Mason | labor |  | ?? |
| Carperter | labor |  | ?? |
| Steel Fixer | labor |  | ?? |
| Concrete Mixer | equipment |  | ?? |
| General Labour | labor |  | ?? |
| Truck | equipment |  | ?? |
| Excavator | equipment |  | ?? |
| Mini Roller Compactor | equipment |  | ? |
| Painter | labor |  | ? |
| Wheel Loader | equipment |  |  |
| Structural Steel Fixer | labor |  | ? |
| Mobile Crane | equipment |  | ? |
| Mason | labor |  | ?? |
| Carperter | labor |  | ?? |
| Concrete Mixer | equipment |  | ?? |
| Steel Fixer | labor |  | ?? |
| Equipment Operator | labor |  | ï»¿ |

## Schedule

| ID | WBS | Activity | Type | Duration | Start | Finish | Predecessors | Complete | Planned start | Planned finish | Total float | Free float | Phasing Code Category | Target Finish Date |
| --- | --- | --- | --- | --- | --- | --- | --- | --- | --- | --- | --- | --- | --- | --- |
|  | 1 | **PROJECT MILESTONES** |  |  | 2026-01-07 | 2027-03-06 |  |  |  |  |  |  |  |  |
|  | 1 | **CONTRACTUAL MILESTONES** |  |  | 2026-01-07 | 2027-03-06 |  |  |  |  |  |  |  |  |
| DAM3-PMS-MMS-0010 |  | Project Start Date | milestone | 0d | 2026-01-07 A | 2026-01-07 A |  | 100% |  |  |  |  | 01 |  |
| DAM3-PMS-MMS-0020 |  | Completion of Mobilization Works | milestone | 0d | 2026-01-18 A | 2026-01-18 A | DAM3-MOB-SO.0020, DAM3-MOB-SO.0020 FF | 100% | 2026-03-25 | 2026-03-25 |  |  | 01 | 15-Aug-22 |
| DAM3-PMS-MMS-0040 |  | Completion of Time Schedule submission | milestone | 0d | 2026-02-11 A | 2026-02-11 A | DAM3-PRE-SUB-0012 | 100% | 2026-01-28 | 2026-01-28 |  |  | 01 | 15-Aug-22 |
| DAM3-PMS-MMS-0030 |  | Completion of Site Suvey Works | milestone | 0d | 2026-02-12 A | 2026-02-12 A | DAM3-C-GEN-10 | 100% | 2026-03-28 | 2026-03-28 |  |  | 01 | 15-Aug-22 |
| DAM3-PMS-MMS-0050 |  | Completion of Plans (PEP,PQP,HSE, Procurement Plan) | milestone | 0d | 2026-05-04 A | 2026-05-04 A | DAM3-PRE-SUB-0015 | 100% | 2026-07-21 | 2026-07-21 |  |  | 01 | 15-Aug-22 |
| DAM3-PMS-MMS-0060 |  | Completion of Engineering and Materials | milestone | 0d | 2026-07-05 A | 2026-07-05 A | DAM3-E-SS-EX-1050 | 100% | 2026-07-21 | 2026-07-21 |  |  | 01 | 15-Aug-22 |
| DAM3-PMS-MMS-0080 |  | Network start | milestone | 0d | 2026-08-01 A | 2026-08-01 A | DAM3-C-ENV-F-212 SS | 100% | 2026-10-22 | 2026-10-22 |  |  | 01 | 15-Aug-22 |
| DAM3-PMS-MMS-0070 |  | Completion of Site levelling, local roads & parkings | milestone | 0d | 2026-10-13 | 2026-10-13 | DAM3-C-GEN-180 |  |  |  | 2.5d | 0d | 01 | 15-Aug-22 |
| DAM3-PMS-MMS-0110 |  | Competion of Testing and Commissioning | milestone | 0d | 2026-12-28 | 2026-12-28 | S001-C-TC-E-3656 |  |  |  | 56.5d |  | 01 |  |
| DAM3-PMS-MMS-0090 |  | Completion of Construction | milestone | 0d | 2027-02-25 | 2027-02-25 | DAM3-C-ENV-R-1440 |  |  |  | 7d |  | 01 | 15-Aug-22 |
| DAM3-PMS-MMS-0100 |  | Project Completion Date | milestone | 0d | 2027-03-06 | 2027-03-06 | DAM3-FH-1020, DAM3-PMS-MMS-0090, DAM3-PMS-MMS-0110 |  |  |  | 0d |  | 01 | 15-Aug-22 |
|  | 3 | **DISCIPLINE MILESTONES** |  |  | 2026-02-15 | 2027-02-25 |  |  |  |  |  |  |  |  |
|  | 6 | **900 SQM FACTORIES** |  |  | 2026-02-15 | 2027-02-25 |  |  |  |  |  |  |  |  |
| DAM3-PMS-DMS-2360 |  | Construction Start | milestone | 0d | 2026-02-15 A | 2026-02-15 A | DAM3-C-GEN-10 SS | 100% | 2026-03-11 | 2026-03-11 |  |  | 01 |  |
| DAM3-PMS-DMS-2310 |  | Completion of Civil works | milestone | 0d | 2026-11-26 | 2026-11-26 | DAM3-PMS-DMS-2360, DAM3-C-B6-A-200, DAM3-C-B5-A-320, DAM3-C-B2-SS-0130 |  |  |  | 34.8d | 0d | 01 |  |
| DAM3-PMS-DMS-2330 |  | Completion of Mechanical works | milestone | 0d | 2027-01-10 | 2027-01-10 | DAM3-PMS-DMS-2310, DAM3-C-B2-M-370 |  |  |  | 40.75d | 28.25d | 01 |  |
| DAM3-PMS-DMS-2320 |  | Completion of Electrical works | milestone | 0d | 2027-02-11 | 2027-02-11 | DAM3-PMS-DMS-2340, DAM3-C-B2-E-420 |  |  |  | 12.5d | 11.5d | 01 |  |
| DAM3-PMS-DMS-2340 |  | Completion of Architectural works | milestone | 0d | 2027-02-11 | 2027-02-11 | DAM3-PMS-DMS-2330, DAM3-C-B6-A-850, DAM3-C-B5-A-1670, DAM3-C-B4-A-1260, DAM3-C-B2-A-340 |  |  |  | 12.5d | 0d | 01 |  |
| DAM3-PMS-DMS-2370 |  | Construction Finish | milestone | 0d | 2027-02-25 | 2027-02-25 | DAM3-C-ENV-R-1440 |  |  |  | 2d | 1d | 01 |  |
|  | 1 | **SITE INFRASTRUCTURE** |  |  | 2027-01-31 | 2027-02-25 |  |  |  |  |  |  |  |  |
| DAM3-PMS-DMS-2460 |  | Completion of Environmentall works | milestone | 0d | 2027-01-31 | 2027-01-31 | DAM3-C-ENV-SW-616 |  |  |  | 22.5d | 21.5d | 01 |  |
| DAM3-PMS-DMS-2450 |  | Completion of External works | milestone | 0d | 2027-02-25 | 2027-02-25 | DAM3-C-ENV-M-1391, DAM3-C-ENV-R-1440 |  |  |  | 2d | 1d | 01 |  |

| ID | WBS | Activity | Duration | Start | Finish | Predecessors | Complete | Planned start | Planned finish | Resources | Phasing Code Category | user_text1 | Target Start Date | Target Finish Date |
| --- | --- | --- | --- | --- | --- | --- | --- | --- | --- | --- | --- | --- | --- | --- |
|  | 2 | **MOBILIZATION** |  | 2026-01-07 | 2026-05-04 |  |  |  |  |  |  |  |  |  |
|  | 3 | **SITE FACILITIES AND OFFICES** |  | 2026-01-07 | 2026-02-23 |  |  |  |  |  |  |  |  |  |
| DAM3-MOB-SO.0019 |  | Mobilization of Manpower | 2d | 2026-01-07 A | 2026-02-23 A | DAM3-MOB-SO.0018, DAM3-PMS-MMS-0040 | 100% | 2026-03-24 | 2026-03-25 |  | 02 |  |  |  |
| DAM3-MOB-SO.0014 |  | Clear and Grub for Offices and Access Roads | 2d | 2026-01-11 A | 2026-02-16 A | DAM3-MOB-SO.0012 SS+3d | 100% | 2026-02-26 | 2026-03-01 | POKLIN [16 h]; Dump Truck [16 h]; Helper [32 h]; DUMP TRUCK DRIVER [32 h]; POKLIN OPERATOR [32 h] | 02 |  |  |  |
| DAM3-MOB-SO.0015 |  | Construct Site Offices | 4d | 2026-01-19 A | 2026-02-10 A | DAM3-MOB-SO.0014, DAM3-MOB-SO.0013 | 100% | 2026-03-02 | 2026-03-05 | CRANE [32 h]; Helper [64 h]; Mason [64 h] | 02 |  |  |  |
| DAM3-MOB-SO.0020 |  | Mobilization of Equipment | 2d | 2026-01-25 A | 2026-02-23 A | DAM3-MOB-SO.0019 SS | 100% | 2026-03-24 | 2026-03-25 |  | 02 |  |  |  |
| DAM3-MOB-SO.0018 |  | Install Project Signs | 4d | 2026-02-03 A | 2026-02-04 A | DAM3-MOB-SO.0017 | 100% | 2026-03-16 | 2026-03-23 | CRANE [32 h]; Helper [64 h]; Mason [64 h] | 02 |  |  |  |
| DAM3-MOB-SO.0011 |  | Site Layout Plan Prep | 2d | 2026-02-04 A | 2026-02-04 A | DAM3-PMS-MMS-0010, DAM3-MOB-SO.0010 | 100% | 2026-02-19 | 2026-02-23 | Draftman [32 h]; Engineer [32 h] | 02 |  |  |  |
| DAM3-MOB-SO.0012 |  | Site Layout Plan Submittal | 2d | 2026-02-04 A | 2026-02-04 A | DAM3-MOB-SO.0011 | 100% | 2026-02-23 | 2026-02-25 | Engineer [32 h]; Draftman [32 h] | 02 |  |  |  |
| DAM3-MOB-SO.0013 |  | Site Layout Plan Owner Approval | 2d | 2026-02-04 A | 2026-02-16 A | DAM3-MOB-SO.0012 | 100% | 2026-02-25 | 2026-02-28 |  | 02 |  |  |  |
| DAM3-MOB-SO.0016 |  | Electrical Works and Connections | 4d | 2026-02-09 A | 2026-02-23 A | DAM3-MOB-SO.0015 | 100% | 2026-03-07 | 2026-03-10 | Helper [64 h]; Electrician [64 h] | 02 |  |  |  |
| DAM3-MOB-SO.0017 |  | Site Utilities | 4d | 2026-02-11 A | 2026-02-23 A | DAM3-MOB-SO.0016 | 100% | 2026-03-11 | 2026-03-15 | Helper [64 h]; Plumber [64 h] | 02 |  |  |  |
| DAM3-MOB-SO.0010 |  | Site Survey | 2d | 2026-02-12 A | 2026-02-12 A | DAM3-PMS-MMS-0010 SS | 100% | 2026-02-17 | 2026-02-19 | Surveyor [32 h] | 02 |  |  |  |
|  | 2 | **PRELIMINARY SUBMITTALS** |  | 2026-01-14 | 2026-05-04 |  |  |  |  |  |  |  |  |  |
|  | 1 | **PREPARATION AND SUBMITTALS** |  | 2026-01-14 | 2026-02-21 |  |  |  |  |  |  |  |  |  |
| DAM3-PRE-SUB-0012 |  | Baseline Schedule | 2d | 2026-01-14 A | 2026-01-14 A | DAM3-PRE-SUB-0010, DAM3-PRE-SUB-0011 | 100% | 2026-03-11 | 2026-03-12 | Engineer [32 h] | 02 | E?I?? C??I?? C????? | 2020-03-16 | 02-Jul-20 A |
| DAM3-PRE-SUB-0011 |  | Health & Safety Plan | 2d | 2026-01-26 A | 2026-01-26 A | DAM3-PRE-SUB-0010 | 100% | 2026-03-09 | 2026-03-10 | Engineer [32 h] | 02 | E?I?? I?E C???C?E ?C?????E ?C?E???E | 2020-03-01 | 20-Jul-20 A |
| DAM3-PRE-SUB-0013 |  | Risk Management plan | 2d | 2026-01-28 A | 2026-01-28 A | DAM3-PRE-SUB-0011 SS, DAM3-PRE-SUB-0012, DAM3-PMS-DMS-2360 | 100% | 2026-03-14 | 2026-03-15 | Engineer [32 h] | 02 |  | 2020-04-07 | 21-Jul-20 A |
| DAM3-PRE-SUB-0015 |  | Quality Control Plan | 2d | 2026-01-28 A | 2026-01-28 A | DAM3-PRE-SUB-0014 | 100% | 2026-03-22 | 2026-03-23 | Engineer [32 h] | 02 | ??C??E ???E?CI C???? C???C?? | 2020-03-04 | 27-Apr-20 A |
| DAM3-PRE-SUB-0010 |  | Project Execution Plan | 2d | 2026-02-21 A | 2026-02-21 A | DAM3-MOB-SO.0015 | 100% | 2026-02-24 | 2026-02-26 | Engineer [32 h] | 02 | E?I?? I?E C?E???? | 2020-08-17 | 01-Sep-20 A |
| DAM3-PRE-SUB-0014 |  | Communication Plan | 2d | 2026-02-21 A | 2026-02-21 A | DAM3-PRE-SUB-0013 SS, DAM3-PRE-SUB-0013 | 100% | 2026-03-10 | 2026-03-11 | Engineer [32 h] | 02 | ??C??E ???E?CI I?E C?E???? | 2020-05-13 | 09-Jul-20 A |
|  | 2 | **REVIEW AND APPROVALS** |  | 2026-01-14 | 2026-05-04 |  |  |  |  |  |  |  |  |  |
| DAM3-PRE-SUB-1015 |  | Baseline Schedule | 10d | 2026-01-14 A | 2026-02-10 A | DAM3-PRE-SUB-1010, DAM3-PRE-SUB-0012 | 100% | 2026-03-24 | 2026-04-04 |  | 02 | E?I?? C??I?? C????? | 2020-03-16 | 02-Jul-20 A |
| DAM3-PRE-SUB-1011 |  | Health & Safety Plan | 10d | 2026-01-26 A | 2026-01-28 A | DAM3-PRE-SUB-0011 | 100% | 2026-03-11 | 2026-03-25 |  | 02 | E?I?? I?E C???C?E ?C?????E ?C?E???E | 2020-03-01 | 20-Jul-20 A |
| DAM3-PRE-SUB-1012 |  | Risk Management plan | 10d | 2026-01-28 A | 2026-02-03 A | DAM3-PRE-SUB-1011 SS, DAM3-PRE-SUB-0013 | 100% | 2026-03-10 | 2026-03-24 |  | 02 |  | 2020-04-07 | 21-Jul-20 A |
| DAM3-PRE-SUB-1014 |  | Quality Control Plan | 10d | 2026-01-28 A | 2026-05-04 A | DAM3-PRE-SUB-0015 | 100% | 2026-03-24 | 2026-04-04 |  | 02 | ??C??E ???E?CI C???? C???C?? | 2020-03-04 | 27-Apr-20 A |
| DAM3-PRE-SUB-1010 |  | Project Execution Plan | 10d | 2026-02-21 A | 2026-05-03 A | DAM3-PRE-SUB-0010 | 100% | 2026-02-26 | 2026-03-10 |  | 02 | E?I?? I?E C?E???? | 2020-08-17 | 01-Sep-20 A |
| DAM3-PRE-SUB-1013 |  | Communication Plan | 10d | 2026-02-21 A | 2026-05-03 A | DAM3-PRE-SUB-1012 SS, DAM3-PRE-SUB-0014 | 100% | 2026-03-12 | 2026-03-26 |  | 02 | ??C??E ???E?CI I?E C?E???? | 2020-05-13 | 09-Jul-20 A |

| ID | WBS | Activity | Duration | Start | Finish | Predecessors | Complete | Planned start | Planned finish | Resources | Phasing Code Category | Discipline |
| --- | --- | --- | --- | --- | --- | --- | --- | --- | --- | --- | --- | --- |
|  | 3 | **ENGINEERING (3%)** |  | 2026-01-15 | 2026-07-05 |  |  |  |  |  |  |  |
|  | 1 | **SHOP DRAWINGS** |  | 2026-01-20 | 2026-07-05 |  |  |  |  |  |  |  |
|  | 1 | **PREPARATION AND SUBMITTAL** |  | 2026-01-20 | 2026-07-01 |  |  |  |  |  |  |  |
|  | 5 | **STRUCTURAL** |  | 2026-02-03 | 2026-06-02 |  |  |  |  |  |  |  |
| DAM3-E-SS-C-830 |  | SECTIONS | 2d | 2026-02-03 A | 2026-02-03 A | DAM3-E-SS-C-820 | 100% | 2026-04-14 | 2026-04-15 | Engineer [4 h]; Draftman [4 h] | 03 | 01 |
| DAM3-E-SS-C-840 |  | EXTERNAL WALL SECTION DETAILS | 2d | 2026-02-03 A | 2026-02-03 A | DAM3-E-SS-C-830 | 100% | 2026-04-16 | 2026-04-18 | Engineer [4 h]; Draftman [4 h] | 03 | 01 |
| DAM3-E-SS-C-850 |  | BASE PLATE DETAILS | 2d | 2026-02-03 A | 2026-02-03 A | DAM3-E-SS-C-840 | 100% | 2026-04-19 | 2026-04-20 | Engineer [4 h]; Draftman [4 h] | 03 | 01 |
| DAM3-E-SS-C-770 |  | BASE PLATE LAYOUT | 2d | 2026-02-07 A | 2026-02-07 A | DAM3-E-SS-C-760, DAM3-PMS-MMS-0070 | 100% | 2026-03-14 | 2026-03-16 | Engineer [32 h]; Draftman [32 h] | 03 | 01 |
| DAM3-E-SS-C-790 |  | ROOF FRAMING LAYOUT | 2d | 2026-02-07 A | 2026-02-07 A | DAM3-E-SS-C-780 | 100% | 2026-03-22 | 2026-03-24 | Engineer [32 h]; Draftman [32 h] | 03 | 01 |
| DAM3-E-SS-C-800 |  | PURLINS FRAMING LAYOUT | 2d | 2026-02-07 A | 2026-02-07 A | DAM3-E-SS-C-790 | 100% | 2026-03-24 | 2026-03-26 | Engineer [32 h]; Draftman [32 h] | 03 | 01 |
| DAM3-E-SS-C-810 |  | ROOF SHEETING LAYOUT | 2d | 2026-02-07 A | 2026-02-07 A | DAM3-E-SS-C-800 | 100% | 2026-03-26 | 2026-03-29 | Engineer [32 h]; Draftman [32 h] | 03 | 01 |
| DAM3-E-SS-C-820 |  | COLUMNS AND AXIS LAYOUT | 2d | 2026-02-07 A | 2026-02-07 A | DAM3-E-SS-C-810 | 100% | 2026-03-29 | 2026-03-31 | Engineer [4 h]; Draftman [4 h] | 03 | 01 |
| DAM3-E-SS-C-750 |  | FOUNDATION LAYOUT | 2d | 2026-02-18 A | 2026-02-18 A | DAM3-E-SS-R-780, DAM3-PMS-MMS-0020, DAM3-PMS-MMS-0050 | 100% | 2026-03-08 | 2026-03-10 | Draftman [32 h]; Engineer [32 h] | 03 | 01 |
| DAM3-E-SS-C-780 |  | TIE BEAM @ 4500mm EL. | 2d | 2026-03-01 A | 2026-03-01 A | DAM3-E-SS-C-770, DAM3-PRE-SUB-1015, DAM3-PRE-SUB-1014, DAM3-PRE-SUB-1013 | 100% | 2026-03-24 | 2026-03-25 | Engineer [32 h]; Draftman [32 h] | 03 | 01 |
| DAM3-E-SS-C-880 |  | PUMP SHED AND GRP WATER TANK STRUCTURAL DETAILS (1-2) | 2d | 2026-03-29 A | 2026-03-29 A | DAM3-E-SS-C-870 | 100% | 2026-04-19 | 2026-04-20 | Engineer [4 h]; Draftman [4 h] | 03 | 01 |
| DAM3-E-SS-C-890 |  | PUMP SHED AND GRP WATER TANK STRUCTURAL DETAILS (2-2) | 2d | 2026-03-29 A | 2026-03-29 A | DAM3-E-SS-C-880 | 100% | 2026-04-21 | 2026-04-22 | Engineer [4 h]; Draftman [4 h] | 03 | 01 |
| DAM3-E-SS-C-760 |  | GRADE BEAM / SLAB ON GRADE LAYOUT | 2d | 2026-04-21 A | 2026-04-21 A | DAM3-E-SS-C-750, DAM3-PMS-MMS-0030 | 100% | 2026-04-30 | 2026-05-02 | Engineer [32 h]; Draftman [32 h] | 03 | 01 |
| DAM3-E-SS-C-860 |  | TYPICAL STRUCTURAL SECTION DETAILS | 2d | 2026-04-21 A | 2026-04-21 A | DAM3-E-SS-C-850 | 100% | 2026-05-04 | 2026-05-05 | Engineer [4 h]; Draftman [4 h] | 03 | 01 |
| DAM3-E-SS-C-870 |  | STRUCTURAL SCHEDULE | 2d | 2026-06-02 A | 2026-06-02 A | DAM3-E-SS-C-860 | 100% | 2026-06-22 | 2026-06-23 | Engineer [4 h]; Draftman [4 h] | 03 | 01 |
|  | 2 | **ARCHITECTURAL** |  | 2026-02-03 | 2026-06-02 |  |  |  |  |  |  |  |
| DAM3-E-SS-A-1170 |  | ELEVATIONS (SHEET 01 0F 02) | 5d | 2026-02-03 A | 2026-02-03 A | DAM3-E-SS-A-850 | 100% | 2026-04-01 | 2026-04-06 |  | 03 | 03 |
| DAM3-E-SS-A-830 |  | GROUND FLOOR LAYOUT PLAN | 2d | 2026-02-03 A | 2026-02-03 A | DAM3-E-SS-C-800 | 100% | 2026-03-25 | 2026-03-26 | Engineer [32 h]; Draftman [32 h] | 03 | 03 |
| DAM3-E-SS-A-840 |  | GROUND FLOOR ENLARGED LAYOUT PLAN | 2d | 2026-02-03 A | 2026-02-03 A | DAM3-E-SS-A-830 | 100% | 2026-03-28 | 2026-03-29 | Engineer [4 h]; Draftman [4 h] | 03 | 03 |
| DAM3-E-SS-A-860 |  | ELEVATIONS (SHEET 01 0F 02) | 2d | 2026-02-03 A | 2026-02-03 A | DAM3-E-SS-A-850 | 100% | 2026-04-01 | 2026-04-02 | Engineer [4 h]; Draftman [4 h] | 03 | 03 |
| DAM3-E-SS-A-870 |  | BUILDING SECTIONS | 2d | 2026-02-03 A | 2026-02-03 A | DAM3-E-SS-A-860 | 100% | 2026-04-04 | 2026-04-05 | Engineer [4 h]; Draftman [4 h] | 03 | 03 |
| DAM3-E-SS-A-880 |  | WALL SECTIONS | 2d | 2026-02-03 A | 2026-02-03 A | DAM3-E-SS-A-870, DAM3-E-SS-A-1170 | 100% | 2026-04-07 | 2026-04-08 | Engineer [4 h]; Draftman [4 h] | 03 | 03 |
| DAM3-E-SS-A-890 |  | CEILING LAYOUT PLAN | 2d | 2026-02-05 A | 2026-02-05 A | DAM3-E-SS-A-880 | 100% | 2026-04-09 | 2026-04-11 | Engineer [4 h]; Draftman [4 h] | 03 | 03 |
| DAM3-E-SS-A-900 |  | FINISHING LAYOUT PLAN | 2d | 2026-02-09 A | 2026-02-09 A | DAM3-E-SS-A-890 | 100% | 2026-04-12 | 2026-04-13 | Engineer [4 h]; Draftman [4 h] | 03 | 03 |
| DAM3-E-SS-A-910 |  | TOILET DETAILS | 2d | 2026-02-11 A | 2026-02-11 A | DAM3-E-SS-A-900, DAM3-E-SA-A-890, DAM3-E-SA-A-1170, DAM3-E-SA-A-880 | 100% | 2026-04-14 | 2026-04-15 | Engineer [4 h]; Draftman [4 h] | 03 | 03 |
| DAM3-E-SS-A-920 |  | DOORS & WINDOWS SCHEDULE | 2d | 2026-02-11 A | 2026-02-11 A | DAM3-E-SS-A-910 | 100% | 2026-04-16 | 2026-04-18 | Engineer [4 h]; Draftman [4 h] | 03 | 03 |
| DAM3-E-SS-A-930 |  | MISCELLANEOUS DETAILS - 01 | 2d | 2026-02-11 A | 2026-02-11 A | DAM3-E-SS-A-920 | 100% | 2026-04-19 | 2026-04-20 | Engineer [4 h]; Draftman [4 h] | 03 | 03 |
| DAM3-E-SS-A-940 |  | MISCELLANEOUS DETAILS - 02 | 2d | 2026-02-11 A | 2026-02-11 A | DAM3-E-SS-A-930 | 100% | 2026-03-31 | 2026-04-02 | Engineer [4 h]; Draftman [4 h] | 03 | 03 |
| DAM3-E-SS-A-950 |  | SIGNAGE LOCATION PLAN | 2d | 2026-02-11 A | 2026-02-11 A | DAM3-E-SS-A-940, DAM3-C-B5-S-1167, DAM3-C-B6-S-647 | 100% | 2026-04-23 | 2026-04-25 | Engineer [4 h]; Draftman [4 h] | 03 | 03 |
| DAM3-E-SS-A-960 |  | SIGNAGE DESIGN DETAILS | 2d | 2026-02-11 A | 2026-02-11 A | DAM3-E-SS-A-950, DAM3-C-B4-S-897 | 100% | 2026-04-26 | 2026-04-27 | Engineer [8 h]; Draftman [8 h] | 03 | 03 |
| DAM3-E-SS-A-850 |  | SKYLIGHT DISTRIBUTION - ROOF LAYOUT PLAN | 2d | 2026-06-02 A | 2026-06-02 A | DAM3-E-SS-A-840 | 100% | 2026-06-22 | 2026-06-23 | Engineer [4 h]; Draftman [4 h] | 03 | 03 |

| ID | WBS | Activity | Duration | Start | Finish | Predecessors | Complete | Planned start | Planned finish | Resources | Phasing Code Category | Discipline |
| --- | --- | --- | --- | --- | --- | --- | --- | --- | --- | --- | --- | --- |
|  | 3 | **MECHANICAL** |  | 2026-02-04 | 2026-04-16 |  |  |  |  |  |  |  |
| DAM3-E-SS-M-650 |  | SCHEMATIC RISER DIAGRAM PLUMBING-DRAINAGE | 2d | 2026-02-04 A | 2026-02-04 A | DAM3-E-SS-M-640 | 100% | 2026-04-08 | 2026-04-11 | Engineer [4 h]; Draftman [4 h] | 03 | 04 |
| DAM3-E-SS-M-660 |  | SCHEMATIC RISER DIAGRAM PLUMBING-WATER | 2d | 2026-02-04 A | 2026-02-04 A | DAM3-E-SS-M-650 | 100% | 2026-04-07 | 2026-04-08 | Engineer [4 h]; Draftman [4 h] | 03 | 04 |
| DAM3-E-SS-M-670 |  | GENERAL MISELLANEOUS DETAILS PLUMBING | 2d | 2026-02-04 A | 2026-02-04 A | DAM3-E-SS-M-660 | 100% | 2026-04-13 | 2026-04-15 | Engineer [4 h]; Draftman [4 h] | 03 | 04 |
| DAM3-E-SS-M-680 |  | GENERAL MISELLANEOUS DETAILS PLUMBING | 2d | 2026-02-04 A | 2026-02-04 A | DAM3-E-SS-M-670 | 100% | 2026-04-15 | 2026-04-18 | Engineer [4 h]; Draftman [4 h] | 03 | 04 |
| DAM3-E-SS-M-750 |  | GENERAL-INSTRUMENTATION & CONTROL | 2d | 2026-02-04 A | 2026-02-04 A | DAM3-E-SS-M-740 | 100% | 2026-05-02 | 2026-05-04 | Engineer [8 h]; Draftman [8 h] | 03 | 04 |
| DAM3-E-SS-M-780 |  | SCHEMATIC RISER DIAGRAM FIREFIGHTING | 2d | 2026-02-04 A | 2026-02-04 A | DAM3-E-SS-M-770 | 100% | 2026-05-09 | 2026-05-11 | Engineer [8 h]; Draftman [8 h] | 03 | 04 |
| DAM3-E-SS-M-790 |  | GENERAL-MISCELLANEOUS DETAILS- FIRE FIGHTING | 2d | 2026-02-04 A | 2026-02-04 A | DAM3-E-SS-M-780 | 100% | 2026-05-11 | 2026-05-13 | Engineer [8 h]; Draftman [8 h] | 03 | 04 |
| DAM3-E-SS-M-800 |  | MISCELLANEOUS DETAILS | 2d | 2026-02-04 A | 2026-02-04 A | DAM3-E-SS-M-790 | 100% | 2026-04-28 | 2026-04-30 | Engineer [8 h]; Draftman [8 h] | 03 | 04 |
| DAM3-E-SS-M-760 |  | GENERAL MISCELLANEOUS DETAILS - HVAC | 2d | 2026-02-05 A | 2026-02-05 A | DAM3-E-SS-M-750 | 100% | 2026-05-04 | 2026-05-06 | Engineer [8 h]; Draftman [8 h] | 03 | 04 |
| DAM3-E-SS-M-610 |  | TOILETS DETAILS PLUMBING-DRAINAGE | 2d | 2026-03-11 A | 2026-03-11 A | DAM3-E-SS-M-600 | 100% | 2026-04-05 | 2026-04-06 | Engineer [4 h]; Draftman [4 h] | 03 | 04 |
| DAM3-E-SS-M-640 |  | TOILET DETAILS PLUMBING-WATER | 2d | 2026-03-11 A | 2026-03-11 A | DAM3-E-SS-M-630, DAM3-C-GEN-190 | 100% | 2026-04-12 | 2026-04-13 | Engineer [4 h]; Draftman [4 h] | 03 | 04 |
| DAM3-E-SS-M-770 |  | TYPICAL GROUND FLOOR PLAN FIREFIGHTING | 2d | 2026-03-14 A | 2026-03-14 A | DAM3-E-SS-M-760 | 100% | 2026-04-26 | 2026-04-27 | Engineer [8 h]; Draftman [8 h] | 03 | 04 |
| DAM3-E-SS-M-620 |  | TYPICAL ROOF PLUMBING PLAN | 2d | 2026-03-16 A | 2026-03-16 A | DAM3-E-SS-M-610 | 100% | 2026-04-07 | 2026-04-08 | Engineer [4 h]; Draftman [4 h] | 03 | 04 |
| DAM3-E-SS-M-600 |  | TYPICAL GROUND FLOOR PLAN-PLUMBING- DRAINAGE | 2d | 2026-03-17 A | 2026-03-17 A | DAM3-E-SS-A-840 | 100% | 2026-04-07 | 2026-04-08 | Engineer [4 h]; Draftman [4 h] | 03 | 04 |
| DAM3-E-SS-M-630 |  | GROUND FLOOR WATER SUPPLY PLAN | 2d | 2026-03-17 A | 2026-03-17 A | DAM3-E-SS-M-620 | 100% | 2026-04-09 | 2026-04-11 | Engineer [4 h]; Draftman [4 h] | 03 | 04 |
| DAM3-E-SS-M-690 |  | SCHEDULE- PLUMBING | 2d | 2026-03-17 A | 2026-03-17 A | DAM3-E-SS-M-680 | 100% | 2026-05-25 | 2026-05-30 | Engineer [4 h]; Draftman [4 h] | 03 | 04 |
| DAM3-E-SS-M-720 |  | SCHEDULES | 2d | 2026-03-17 A | 2026-03-17 A | DAM3-E-SS-M-710 | 100% | 2026-05-31 | 2026-06-01 | Engineer [8 h]; Draftman [8 h] | 03 | 04 |
| DAM3-E-SS-M-730 |  | GROUND FLOOR PLAN-HVAC SYSTEM | 2d | 2026-03-26 A | 2026-03-26 A | DAM3-E-SS-M-720 | 100% | 2026-04-21 | 2026-04-22 | Engineer [8 h]; Draftman [8 h] | 03 | 04 |
| DAM3-E-SS-M-740 |  | TYPICAL ROOF HVAC PLAN | 2d | 2026-03-26 A | 2026-03-26 A | DAM3-E-SS-M-730 | 100% | 2026-04-29 | 2026-05-02 | Engineer [8 h]; Draftman [8 h] | 03 | 04 |
| DAM3-E-SS-M-700 |  | PUMP ROOM LAYOUT | 2d | 2026-04-16 A | 2026-04-16 A | DAM3-E-SS-M-690 | 100% | 2026-04-29 | 2026-04-30 | Engineer [4 h]; Draftman [4 h] | 03 | 04 |
| DAM3-E-SS-M-710 |  | PUMP ROOM 3D & SECTIONS VIEW | 2d | 2026-04-16 A | 2026-04-16 A | DAM3-E-SS-M-700 | 100% | 2026-05-02 | 2026-05-03 | Engineer [8 h]; Draftman [8 h] | 03 | 04 |
|  | 4 | **ELECTRICAL** |  | 2026-02-09 | 2026-06-25 |  |  |  |  |  |  |  |
| DAM3-E-SS-E-1000 |  | ROOF FLOOR LIGHTING PLAN | 2d | 2026-02-09 A | 2026-02-09 A | DAM3-E-SS-E-990 | 100% | 2026-04-08 | 2026-04-11 | Engineer [4 h]; Draftman [4 h] | 03 | 05 |
| DAM3-E-SS-E-1060 |  | ROOF FLOOR LIGHTENING PLAN | 2d | 2026-02-09 A | 2026-02-09 A | DAM3-E-SS-E-1050 | 100% | 2026-04-19 | 2026-04-20 | Engineer [8 h]; Draftman [8 h] | 03 | 05 |
| DAM3-E-SS-E-1140 |  | POWER FOR MECHANICAL | 2d | 2026-02-09 A | 2026-02-09 A | DAM3-E-SS-E-1130 | 100% | 2026-05-11 | 2026-05-13 | Engineer [8 h]; Draftman [8 h] | 03 | 05 |
| DAM3-E-SS-E-1150 |  | GROUND FLOOR LIGHTING PLAN | 2d | 2026-02-09 A | 2026-02-09 A | DAM3-E-SS-E-1140 | 100% | 2026-05-12 | 2026-05-13 | Engineer [8 h]; Draftman [8 h] | 03 | 05 |
| DAM3-E-SS-E-940 |  | GROUND FLOOR POWER PLAN | 2d | 2026-02-09 A | 2026-02-09 A | DAM3-E-SS-M-600 | 100% | 2026-03-25 | 2026-03-28 | Engineer [4 h]; Draftman [4 h] | 03 | 05 |
| DAM3-E-SS-E-950 |  | GROUND FLOOR POWER FOR MECHANICAL | 2d | 2026-02-09 A | 2026-02-09 A | DAM3-E-SS-E-940 | 100% | 2026-03-28 | 2026-03-30 | Engineer [4 h]; Draftman [4 h] | 03 | 05 |
| DAM3-E-SS-E-960 |  | ROOF FLOOR POWER FOR MECHANICAL | 2d | 2026-02-09 A | 2026-02-09 A | DAM3-E-SS-E-950 | 100% | 2026-03-30 | 2026-04-01 | Engineer [4 h]; Draftman [4 h] | 03 | 05 |
| DAM3-E-SS-E-990 |  | GROUND FLOOR LIGHTING PLAN | 2d | 2026-02-09 A | 2026-02-09 A | DAM3-E-SS-E-980 | 100% | 2026-04-06 | 2026-04-08 | Engineer [4 h]; Draftman [4 h] | 03 | 05 |
| DAM3-E-SS-E-1130 |  | GROUND FLOOR POWER PLAN | 1d | 2026-02-09 A | 2026-02-09 A | DAM3-E-SS-E-1120 | 100% |  |  | Engineer [8 h]; Draftman [8 h] | 03 | 05 |
| DAM3-E-SS-E-1030 |  | GROUND FLOOR CCTV PLAN | 2d | 2026-03-01 A | 2026-03-01 A | DAM3-E-SS-E-1020 | 100% | 2026-04-05 | 2026-04-06 | Engineer [4 h]; Draftman [4 h] | 03 | 05 |
| DAM3-E-SS-E-1040 |  | GROUND FLOOR DATA & TELECOM PLAN | 2d | 2026-03-01 A | 2026-03-01 A | DAM3-E-SS-E-1030 | 100% | 2026-04-07 | 2026-04-08 | Engineer [8 h]; Draftman [8 h] | 03 | 05 |
| DAM3-E-SS-E-1050 |  | GROUND FLOOR GROUNDING PLAN | 2d | 2026-03-01 A | 2026-03-01 A | DAM3-E-SS-E-1040 | 100% | 2026-04-16 | 2026-04-18 | Engineer [8 h]; Draftman [8 h] | 03 | 05 |
| DAM3-E-SS-E-1120 |  | ELECTRICAL DETAILS | 2d | 2026-03-01 A | 2026-03-01 A | DAM3-E-SS-E-1110 | 100% | 2026-05-07 | 2026-05-09 | Engineer [8 h]; Draftman [8 h] | 03 | 05 |
| DAM3-E-SS-E-1160 |  | GROUND FLOOR GROUNDING PLAN | 2d | 2026-03-01 A | 2026-03-01 A | DAM3-E-SS-E-1150 | 100% | 2026-05-03 | 2026-05-04 | Engineer [8 h]; Draftman [8 h] | 03 | 05 |
| DAM3-E-SS-E-1180 |  | ELECTRICAL DETAILS | 2d | 2026-03-01 A | 2026-03-01 A | DAM3-E-SS-E-1170 | 100% | 2026-05-14 | 2026-05-16 | Engineer [32 h]; Draftman [32 h] | 03 | 05 |
| DAM3-E-SS-E-1010 |  | GOUND FLOOR ACCESS CONTROL | 2d | 2026-03-29 A | 2026-03-29 A | DAM3-E-SS-E-1000 | 100% | 2026-04-13 | 2026-04-14 | Engineer [4 h]; Draftman [4 h] | 03 | 05 |
| DAM3-E-SS-E-1020 |  | GROUND FLOOR FIRE ALARM PLAN | 2d | 2026-03-29 A | 2026-03-29 A | DAM3-E-SS-E-1010 | 100% | 2026-04-12 | 2026-04-13 | Engineer [4 h]; Draftman [4 h] | 03 | 05 |
| DAM3-E-SS-E-1070 |  | POWER RISER DIAGRAM | 2d | 2026-03-29 A | 2026-03-29 A | DAM3-E-SS-E-1060 | 100% | 2026-04-19 | 2026-04-20 | Engineer [8 h]; Draftman [8 h] | 03 | 05 |
| DAM3-E-SS-E-1080 |  | FIRE ALARM RISER DIAGRAM | 2d | 2026-03-29 A | 2026-03-29 A | DAM3-E-SS-E-1070 | 100% | 2026-04-19 | 2026-04-20 | Engineer [8 h]; Draftman [8 h] | 03 | 05 |
| DAM3-E-SS-E-1090 |  | DATA & TELECOME RISER DIAGRAM | 2d | 2026-03-29 A | 2026-03-29 A | DAM3-E-SS-E-1080 | 100% | 2026-04-23 | 2026-04-25 | Engineer [8 h]; Draftman [8 h] | 03 | 05 |
| DAM3-E-SS-E-1100 |  | ACCESS CONTROL RISER DIAGRAM | 2d | 2026-03-29 A | 2026-03-29 A | DAM3-E-SS-E-1090 | 100% | 2026-04-26 | 2026-04-27 | Engineer [8 h]; Draftman [8 h] | 03 | 05 |
| DAM3-E-SS-E-1110 |  | SCHEDULES | 2d | 2026-03-29 A | 2026-03-29 A | DAM3-E-SS-E-1100 | 100% | 2026-04-28 | 2026-04-29 | Engineer [8 h]; Draftman [8 h] | 03 | 05 |
| DAM3-E-SS-E-970 |  | ROOF FLOOR POWER | 2d | 2026-04-08 A | 2026-04-09 A | DAM3-E-SS-E-960 | 100% |  |  | Engineer [4 h]; Draftman [4 h] | 03 | 05 |
| DAM3-E-SS-E-1170 |  | RISER DIAGRAM | 2d | 2026-04-27 A | 2026-04-27 A | DAM3-E-SS-E-1160 | 100% | 2026-05-13 | 2026-05-14 | Engineer [32 h]; Draftman [32 h] | 03 | 05 |
| DAM3-E-SS-E-980 |  | PV SYSTEM CALCULATION | 2d | 2026-06-25 A | 2026-06-25 A | DAM3-E-SS-E-970 | 100% | 2026-07-21 | 2026-07-22 | Engineer [4 h]; Draftman [4 h] | 03 | 05 |

| ID | WBS | Activity | Duration | Start | Finish | Predecessors | Complete | Planned start | Planned finish | Resources | Phasing Code Category | Discipline |
| --- | --- | --- | --- | --- | --- | --- | --- | --- | --- | --- | --- | --- |
|  | 1 | **ROAD DRAWINGS** |  | 2026-01-20 | 2026-07-01 |  |  |  |  |  |  |  |
| DAM3-E-SS-R-780 |  | TOPOGRAPHIC SURVEY-CONTOURS MAP | 2d | 2026-01-20 A | 2026-01-20 A | DAM3-E-SS-R-770 | 100% | 2026-03-05 | 2026-03-07 | Engineer [32 h]; Draftman [32 h] | 03 | 07 |
| DAM3-E-SS-R-730 |  | GRADING LAYOUT PLAN | 2d | 2026-02-03 A | 2026-02-03 A | DAM3-MOB-SO.0016 | 100% | 2026-04-28 | 2026-04-29 | Engineer [32 h]; Draftman [32 h] | 03 | 07 |
| DAM3-E-SS-R-880 |  | GENERAL SITE PLAN - OVERALL | 2d | 2026-03-08 A | 2026-03-08 A | DAM3-E-SS-R-870 | 100% | 2026-04-14 | 2026-04-15 | Engineer [4 h]; Draftman [4 h] | 03 | 07 |
| DAM3-E-SS-R-890 |  | SITE SETTING-OUT PLAN - OVERALL | 2d | 2026-03-08 A | 2026-03-08 A | DAM3-E-SS-R-880 | 100% | 2026-04-16 | 2026-04-18 | Engineer [4 h]; Draftman [4 h] | 03 | 07 |
| DAM3-E-SS-R-900 |  | GENERAL LANDSCAPE LAYOUT | 2d | 2026-03-08 A | 2026-03-08 A | DAM3-E-SS-R-890 | 100% | 2026-04-19 | 2026-04-20 | Engineer [4 h]; Draftman [4 h] | 03 | 07 |
| DAM3-E-SS-R-910 |  | GENERAL HARDSCAPE LAYOUT | 2d | 2026-03-08 A | 2026-03-08 A | DAM3-E-SS-R-900 | 100% | 2026-04-21 | 2026-04-22 | Engineer [4 h]; Draftman [4 h] | 03 | 07 |
| DAM3-E-SS-R-920 |  | GENERAL SOFTSCAPE LAYOUT | 2d | 2026-03-08 A | 2026-03-08 A | DAM3-E-SS-R-910 | 100% | 2026-04-23 | 2026-04-25 | Engineer [4 h]; Draftman [4 h] | 03 | 07 |
| DAM3-E-SS-R-960 |  | LANDSCAPE SCHEDULES | 2d | 2026-03-08 A | 2026-03-08 A | DAM3-E-SS-R-950 | 100% | 2026-05-03 | 2026-05-04 |  | 03 | 07 |
| DAM3-E-SS-R-930 |  | PUMP ROOM DETAILS | 1d | 2026-03-14 A | 2026-03-14 A | DAM3-E-SS-R-920 | 100% | 2026-04-21 | 2026-04-21 | Engineer [4 h]; Draftman [4 h] | 03 | 07 |
| DAM3-E-SS-R-740 |  | ROAD LAYOUT PLAN | 2d | 2026-03-16 A | 2026-03-16 A | DAM3-E-SS-R-730 | 100% | 2026-03-22 | 2026-03-23 | Engineer [32 h]; Draftman [32 h] | 03 | 07 |
| DAM3-E-SS-R-750 |  | TYPICAL CROSS SECTIONS - KEY PLAN | 2d | 2026-03-16 A | 2026-03-16 A | DAM3-E-SS-R-740 | 100% | 2026-03-24 | 2026-03-25 | Engineer [32 h]; Draftman [32 h] | 03 | 07 |
| DAM3-E-SS-R-760 |  | TYPICAL CROSS SECTIONS | 2d | 2026-03-16 A | 2026-03-16 A | DAM3-E-SS-R-750 | 100% | 2026-03-26 | 2026-03-28 | Engineer [32 h]; Draftman [32 h] | 03 | 07 |
| DAM3-E-SS-R-770 |  | ROAD PROFILES | 2d | 2026-03-16 A | 2026-03-16 A | DAM3-E-SS-R-760 | 100% | 2026-04-09 | 2026-04-11 | Engineer [32 h]; Draftman [32 h] | 03 | 07 |
| DAM3-E-SS-R-940 |  | GENERAL DETAILS | 1d | 2026-03-18 A | 2026-03-18 A | DAM3-E-SS-R-930, DAM3-E-SA-M-650, DAM3-E-SA-E-980, DAM3-E-SA-E-970, DAM3-E-SA-E-960, DAM3-E-SA-R-920, DAM3-E-SA-EX-750 | 100% | 2026-04-29 | 2026-04-29 | Engineer [4 h]; Draftman [4 h] | 03 | 07 |
| DAM3-E-SS-R-830 |  | SIGNING & MARKING LAYOUT PLAN | 2d | 2026-04-21 A | 2026-04-21 A | DAM3-E-SS-R-820 | 100% | 2026-05-10 | 2026-05-11 | Engineer [32 h]; Draftman [32 h] | 03 | 07 |
| DAM3-E-SS-R-840 |  | ROAD STANDARD DETAILS-TYPICAL PAVEMENT DETAILS | 2d | 2026-04-21 A | 2026-04-21 A | DAM3-E-SS-R-830 | 100% | 2026-05-12 | 2026-05-13 | Engineer [32 h]; Draftman [32 h] | 03 | 07 |
| DAM3-E-SS-R-850 |  | ROAD STANDARD DETAILS-TYPICAL CURB DETAILS | 2d | 2026-04-21 A | 2026-04-21 A | DAM3-E-SS-R-840 | 100% | 2026-05-14 | 2026-05-16 | Engineer [32 h]; Draftman [32 h] | 03 | 07 |
| DAM3-E-SS-R-860 |  | ROAD STANDARD DETAILS-ROAD SIGN DETAILS | 2d | 2026-04-21 A | 2026-04-21 A | DAM3-E-SS-R-850 | 100% | 2026-05-17 | 2026-05-18 | Engineer [4 h]; Draftman [4 h] | 03 | 07 |
| DAM3-E-SS-R-870 |  | ROAD STANDARD DETAILS-ROAD MARKING DETAILS | 2d | 2026-04-21 A | 2026-04-21 A | DAM3-E-SS-R-860 | 100% | 2026-05-19 | 2026-05-20 | Engineer [4 h]; Draftman [4 h] | 03 | 07 |
| DAM3-E-SS-R-790 |  | ALIGNMENT & CURB SETTING OUT | 2d | 2026-06-14 A | 2026-06-14 A | DAM3-E-SS-R-780 | 100% | 2026-06-16 | 2026-06-17 | Engineer [32 h]; Draftman [32 h] | 03 | 07 |
| DAM3-E-SS-R-800 |  | ALIGNMENT & CURB SETTING OUT TABLES | 2d | 2026-06-14 A | 2026-06-14 A | DAM3-E-SS-R-790 | 100% | 2026-06-18 | 2026-06-20 | Engineer [32 h]; Draftman [32 h] | 03 | 07 |
| DAM3-E-SS-R-810 |  | ALIGNMNET GEOMETRIC DATA | 2d | 2026-06-14 A | 2026-06-14 A | DAM3-E-SS-R-800 | 100% | 2026-06-21 | 2026-06-22 | Engineer [32 h]; Draftman [32 h] | 03 | 07 |
| DAM3-E-SS-R-820 |  | SWEPT PATH LAYOUT PLAN | 2d | 2026-06-14 A | 2026-06-14 A | DAM3-E-SS-R-810 | 100% | 2026-06-23 | 2026-06-24 | Engineer [32 h]; Draftman [32 h] | 03 | 07 |
| DAM3-E-SS-R-950 |  | LANDSCAPE DETAILS | 1d | 2026-07-01 A | 2026-07-01 A | DAM3-E-SS-R-940, DAM3-C-B2-S-6233 | 100% | 2026-07-26 | 2026-07-26 | Engineer [4 h]; Draftman [4 h] | 03 | 07 |

| ID | WBS | Activity | Duration | Start | Finish | Predecessors | Complete | Planned start | Planned finish | Resources | Phasing Code Category | Discipline |
| --- | --- | --- | --- | --- | --- | --- | --- | --- | --- | --- | --- | --- |
|  | 6 | **EXTERNAL** |  | 2026-02-10 | 2026-06-02 |  |  |  |  |  |  |  |
| DAM3-E-SS-EX-1000 |  | WASHOUT CHAMBER DETAILS | 2d | 2026-02-10 A | 2026-02-10 A | DAM3-E-SS-EX-990 | 100% | 2026-05-20 | 2026-05-23 |  | 03 | 07 |
| DAM3-E-SS-EX-1010 |  | AIR RELEASE VALVE CHAMBER DETAILS | 2d | 2026-02-10 A | 2026-02-10 A | DAM3-E-SS-EX-1000 | 100% | 2026-05-23 | 2026-05-25 |  | 03 | 07 |
| DAM3-E-SS-EX-1020 |  | THRUST BLOCK DETAILS (SHEET 1 OF 4) | 2d | 2026-02-10 A | 2026-02-10 A | DAM3-E-SS-EX-1010 | 100% | 2026-05-25 | 2026-05-31 |  | 03 | 07 |
| DAM3-E-SS-EX-1030 |  | THRUST BLOCK DETAILS (SHEET 2 OF 4) | 2d | 2026-02-10 A | 2026-02-10 A | DAM3-E-SS-EX-1020 SS | 100% | 2026-05-25 | 2026-05-31 |  | 03 | 07 |
| DAM3-E-SS-EX-1040 |  | THRUST BLOCK DETAILS (SHEET 3 OF 4) | 2d | 2026-02-10 A | 2026-02-10 A | DAM3-E-SS-EX-1030 SS | 100% | 2026-05-25 | 2026-05-31 |  | 03 | 07 |
| DAM3-E-SS-EX-1050 |  | THRUST BLOCK DETAILS (SHEET 4 OF 4) | 2d | 2026-02-10 A | 2026-02-10 A | DAM3-E-SS-EX-1040 SS | 100% | 2026-05-25 | 2026-05-31 |  | 03 | 07 |
| DAM3-E-SS-EX-730 |  | PIPE TRENCH DETAILS | 2d | 2026-02-10 A | 2026-02-10 A | DAM3-E-SS-EX-720 | 100% | 2026-04-01 | 2026-04-04 | Engineer [4 h]; Draftman [4 h] | 03 | 07 |
| DAM3-E-SS-EX-740 |  | BURIED GATE VALVE DETAILS | 2d | 2026-02-10 A | 2026-02-10 A | DAM3-E-SS-EX-730 | 100% | 2026-03-29 | 2026-03-31 | Engineer [4 h]; Draftman [4 h] | 03 | 07 |
| DAM3-E-SS-EX-770 |  | WASHOUT CHAMBER DETAILS | 2d | 2026-02-10 A | 2026-02-10 A | DAM3-E-SS-EX-760 | 100% | 2026-04-05 | 2026-04-07 | Engineer [4 h]; Draftman [4 h] | 03 | 07 |
| DAM3-E-SS-EX-780 |  | AIR RELEASE VALVE CHAMBER DETAILS | 2d | 2026-02-10 A | 2026-02-10 A | DAM3-E-SS-EX-770 | 100% | 2026-04-07 | 2026-04-09 | Engineer [4 h]; Draftman [4 h] | 03 | 07 |
| DAM3-E-SS-EX-810 |  | THRUST BLOCK DETAILS (SHEET 1 OF 4) | 2d | 2026-02-10 A | 2026-02-10 A | DAM3-E-SS-EX-800 | 100% | 2026-04-20 | 2026-04-22 | Engineer [8 h]; Draftman [8 h] | 03 | 07 |
| DAM3-E-SS-EX-820 |  | THRUST BLOCK DETAILS (SHEET 2 OF 4) | 2d | 2026-02-10 A | 2026-02-10 A | DAM3-E-SS-EX-810 SS | 100% | 2026-04-20 | 2026-04-22 | Engineer [8 h]; Draftman [8 h] | 03 | 07 |
| DAM3-E-SS-EX-830 |  | THRUST BLOCK DETAILS (SHEET 3 OF 4) | 2d | 2026-02-10 A | 2026-02-10 A | DAM3-E-SS-EX-820 SS | 100% | 2026-04-20 | 2026-04-22 | Engineer [8 h]; Draftman [8 h] | 03 | 07 |
| DAM3-E-SS-EX-840 |  | THRUST BLOCK DETAILS (SHEET 4 OF 4) | 2d | 2026-02-10 A | 2026-02-10 A | DAM3-E-SS-EX-830 SS | 100% | 2026-04-20 | 2026-04-22 | Engineer [8 h]; Draftman [8 h] | 03 | 07 |
| DAM3-E-SS-EX-870 |  | GENERAL NOTES | 2d | 2026-02-10 A | 2026-02-10 A | DAM3-E-SS-EX-860 | 100% | 2026-04-27 | 2026-04-29 |  | 03 | 07 |
| DAM3-E-SS-EX-880 |  | PIPE TRENCHES DETAILS (1) | 2d | 2026-02-10 A | 2026-02-10 A | DAM3-E-SS-EX-870 | 100% | 2026-04-29 | 2026-05-02 |  | 03 | 07 |
| DAM3-E-SS-EX-890 |  | PIPE TRENCHES DETAILS (2) | 2d | 2026-02-10 A | 2026-02-10 A | DAM3-E-SS-EX-880 | 100% | 2026-04-19 | 2026-04-21 |  | 03 | 07 |
| DAM3-E-SS-EX-900 |  | CAST IN PLACE MANHOLE DETAILS FOR DEPTH < 6000MM (TYPE-A) | 2d | 2026-02-10 A | 2026-02-10 A | DAM3-E-SS-EX-890 | 100% | 2026-05-04 | 2026-05-06 |  | 03 | 07 |
| DAM3-E-SS-EX-920 |  | BACKDROP DETAIL OF PRECAST MANHOLE DEPTH < 3000MM | 2d | 2026-02-10 A | 2026-02-10 A | DAM3-E-SS-EX-910 SS | 100% | 2026-04-21 | 2026-04-23 |  | 03 | 07 |
| DAM3-E-SS-EX-930 |  | BACKDROP DETAIL OF PRECAST MANHOLE DEPTH FROM 3000MM TO 6000MM | 2d | 2026-02-10 A | 2026-02-10 A | DAM3-E-SS-EX-920 SS | 100% | 2026-05-04 | 2026-05-06 |  | 03 | 07 |
| DAM3-E-SS-EX-960 |  | PIPE TRENCH DETAILS | 2d | 2026-02-10 A | 2026-02-10 A | DAM3-E-SS-EX-950 | 100% | 2026-04-26 | 2026-04-28 |  | 03 | 07 |
| DAM3-E-SS-EX-970 |  | BURIED GATE VALVE DETAILS | 2d | 2026-02-10 A | 2026-02-10 A | DAM3-E-SS-EX-960 | 100% | 2026-05-13 | 2026-05-16 |  | 03 | 07 |
| DAM3-E-SS-EX-910 |  | CAST IN PLACE MANHOLE DETAILS FOR DEPTH < 6000MM (TYPE-B) | 2d | 2026-02-12 A | 2026-02-12 A | DAM3-E-SS-EX-900 SS | 100% | 2026-05-04 | 2026-05-06 |  | 03 | 07 |
| DAM3-E-SS-EX-940 |  | PRECAST MANHOLE DETAILS | 2d | 2026-04-15 A | 2026-04-15 A | DAM3-E-SS-EX-930 | 100% | 2026-05-20 | 2026-05-21 |  | 03 | 07 |
| DAM3-E-SS-EX-750 |  | SINGLE VALVE CHAMBER DETAILS | 2d | 2026-04-21 A | 2026-04-21 A | DAM3-E-SS-EX-740 | 100% | 2026-05-13 | 2026-05-14 | Engineer [4 h]; Draftman [4 h] | 03 | 07 |
| DAM3-E-SS-EX-760 |  | DOUBLE VALVE CHAMBER DETAILS | 2d | 2026-04-21 A | 2026-04-21 A | DAM3-E-SS-EX-750 | 100% | 2026-05-16 | 2026-05-17 | Engineer [4 h]; Draftman [4 h] | 03 | 07 |
| DAM3-E-SS-EX-980 |  | SINGLE VALVE CHAMBER DETAILS | 2d | 2026-04-21 A | 2026-04-21 A | DAM3-E-SS-EX-970 | 100% | 2026-06-18 | 2026-06-20 |  | 03 | 07 |
| DAM3-E-SS-EX-990 |  | DOUBLE VALVE CHAMBER DETAILS | 2d | 2026-04-21 A | 2026-04-21 A | DAM3-E-SS-EX-980 | 100% | 2026-06-21 | 2026-06-22 |  | 03 | 07 |
| DAM3-E-SS-EX-690 |  | POTABLE WATER NETWORK | 2d | 2026-05-11 A | 2026-05-11 A | DAM3-E-SS-R-730, DAM3-E-SS-A-830 | 100% | 2026-05-25 | 2026-05-30 | Engineer [4 h]; Draftman [4 h] | 03 | 07 |
| DAM3-E-SS-EX-700 |  | FIRE FIGHTING WATER NETWORK | 2d | 2026-05-11 A | 2026-05-11 A | DAM3-E-SS-EX-690 | 100% | 2026-05-31 | 2026-06-01 | Engineer [4 h]; Draftman [4 h] | 03 | 07 |
| DAM3-E-SS-EX-710 |  | POTABLE WATER NETWORK PROFILES | 2d | 2026-05-11 A | 2026-05-11 A | DAM3-E-SS-EX-700 | 100% | 2026-06-02 | 2026-06-03 | Engineer [4 h]; Draftman [4 h] | 03 | 07 |
| DAM3-E-SS-EX-720 |  | FIRE FIGHTING NETWORK PROFILE | 2d | 2026-05-11 A | 2026-05-11 A | DAM3-E-SS-EX-710 | 100% | 2026-06-04 | 2026-06-06 | Engineer [4 h]; Draftman [4 h] | 03 | 07 |
| DAM3-E-SS-EX-950 |  | IRRIGATION NETWORK LAYOUT SHEET 1 OF 1 | 2d | 2026-05-12 A | 2026-05-12 A | DAM3-E-SS-EX-940 | 100% | 2026-06-16 | 2026-06-17 |  | 03 | 07 |
| DAM3-E-SS-EX-850 |  | SEWAGE NETWORK | 2d | 2026-05-14 A | 2026-05-14 A | DAM3-E-SS-EX-840 | 100% | 2026-06-11 | 2026-06-13 | Engineer [8 h]; Draftman [8 h] | 03 | 07 |
| DAM3-E-SS-EX-860 |  | SEWAGE NETWORK PROFILES | 2d | 2026-05-14 A | 2026-05-14 A | DAM3-E-SS-EX-850 | 100% | 2026-06-14 | 2026-06-15 |  | 03 | 07 |
| DAM3-E-SS-EX-790 |  | FLOW METER DETAILS | 2d | 2026-06-02 A | 2026-06-02 A | DAM3-E-SS-EX-780 | 100% | 2026-06-22 | 2026-06-23 | Engineer [4 h]; Draftman [4 h] | 03 | 07 |
| DAM3-E-SS-EX-800 |  | FLOW METER REINFORCEMENT DETAILS | 2d | 2026-06-02 A | 2026-06-02 A | DAM3-E-SS-EX-790 | 100% | 2026-06-24 | 2026-06-25 | Engineer [4 h]; Draftman [4 h] | 03 | 07 |

| ID | WBS | Activity | Duration | Start | Finish | Predecessors | Complete | Planned start | Planned finish | Resources | Phasing Code Category | Discipline |
| --- | --- | --- | --- | --- | --- | --- | --- | --- | --- | --- | --- | --- |
|  | 2 | **REVIEW AND APPROVAL** |  | 2026-01-20 | 2026-07-05 |  |  |  |  |  |  |  |
|  | 5 | **STRUCTURAL** |  | 2026-02-03 | 2026-06-03 |  |  |  |  |  |  |  |
| DAM3-E-SA-C-830 |  | SECTIONS | 2d | 2026-02-03 A | 2026-02-05 A | DAM3-E-SS-C-830 | 100% | 2026-04-16 | 2026-04-18 | Engineer [4 h]; Draftman [4 h] | 03 | 01 |
| DAM3-E-SA-C-840 |  | EXTERNAL WALL SECTION DETAILS | 2d | 2026-02-03 A | 2026-02-05 A | DAM3-E-SS-C-840, DAM3-E-SA-C-820, DAM3-E-SA-C-810, DAM3-E-SA-C-790 | 100% | 2026-04-19 | 2026-04-20 | Engineer [4 h]; Draftman [4 h] | 03 | 01 |
| DAM3-E-SA-C-850 |  | BASE PLATE DETAILS | 2d | 2026-02-03 A | 2026-02-05 A | DAM3-E-SS-C-850 | 100% | 2026-04-21 | 2026-04-22 | Engineer [4 h]; Draftman [4 h] | 03 | 01 |
| DAM3-E-SA-C-770 |  | BASE PLATE LAYOUT | 2d | 2026-02-07 A | 2026-03-17 A | DAM3-E-SS-C-770, DAM3-E-SA-C-760 | 100% | 2026-03-16 | 2026-03-22 | Engineer [32 h]; Draftman [32 h] | 03 | 01 |
| DAM3-E-SA-C-790 |  | ROOF FRAMING LAYOUT | 2d | 2026-02-07 A | 2026-03-17 A | DAM3-E-SS-C-790 | 100% | 2026-03-24 | 2026-03-26 | Engineer [32 h]; Draftman [32 h] | 03 | 01 |
| DAM3-E-SA-C-800 |  | PURLINS FRAMING LAYOUT | 2d | 2026-02-07 A | 2026-03-17 A | DAM3-E-SS-C-800, DAM3-E-SA-C-780 | 100% | 2026-03-26 | 2026-03-29 | Engineer [32 h]; Draftman [32 h] | 03 | 01 |
| DAM3-E-SA-C-810 |  | ROOF SHEETING LAYOUT | 2d | 2026-02-07 A | 2026-03-17 A | DAM3-E-SA-C-800, DAM3-E-SS-C-810 | 100% | 2026-03-29 | 2026-03-31 | Engineer [4 h]; Draftman [4 h] | 03 | 01 |
| DAM3-E-SA-C-820 |  | COLUMNS AND AXIS LAYOUT | 2d | 2026-02-07 A | 2026-03-07 A | DAM3-E-SS-C-820 | 100% | 2026-03-31 | 2026-04-02 | Engineer [4 h]; Draftman [4 h] | 03 | 01 |
| DAM3-E-SA-C-750 |  | FOUNDATION LAYOUT | 2d | 2026-02-18 A | 2026-03-07 A | DAM3-E-SS-C-750 | 100% | 2026-03-10 | 2026-03-12 | Draftman [32 h]; Engineer [32 h] | 03 | 01 |
| DAM3-E-SA-C-780 |  | TIE BEAM @ 4500mm EL. | 2d | 2026-03-01 A | 2026-05-17 A | DAM3-E-SS-C-780, DAM3-E-SA-C-770 | 100% | 2026-03-26 | 2026-03-28 | Engineer [32 h]; Draftman [32 h] | 03 | 01 |
| DAM3-E-SA-C-880 |  | PUMP SHED AND GRP WATER TANK STRUCTURAL DETAILS (1-2) | 2d | 2026-03-29 A | 2026-05-17 A | DAM3-E-SS-C-880 | 100% | 2026-04-21 | 2026-04-22 | Engineer [4 h]; Draftman [4 h] | 03 | 01 |
| DAM3-E-SA-C-890 |  | PUMP SHED AND GRP WATER TANK STRUCTURAL DETAILS (2-2) | 2d | 2026-03-29 A | 2026-05-17 A | DAM3-E-SS-C-890 | 100% | 2026-04-23 | 2026-04-25 | Engineer [4 h]; Draftman [4 h] | 03 | 01 |
| DAM3-E-SA-C-760 |  | GRADE BEAM / SLAB ON GRADE LAYOUT | 2d | 2026-04-21 A | 2026-05-03 A | DAM3-E-SS-C-760 | 100% | 2026-05-03 | 2026-05-04 | Engineer [32 h]; Draftman [32 h] | 03 | 01 |
| DAM3-E-SA-C-860 |  | TYPICAL STRUCTURAL SECTION DETAILS | 2d | 2026-04-21 A | 2026-05-12 A | DAM3-E-SS-C-860, DAM3-E-SA-C-840, DAM3-E-SA-C-830 | 100% | 2026-05-06 | 2026-05-07 | Engineer [4 h]; Draftman [4 h] | 03 | 01 |
| DAM3-E-SA-C-870 |  | STRUCTURAL SCHEDULE | 2d | 2026-06-02 A | 2026-06-03 A | DAM3-E-SS-C-870 | 100% | 2026-06-24 | 2026-06-25 | Engineer [4 h]; Draftman [4 h] | 03 | 01 |
|  | 2 | **ARCHITECTURAL** |  | 2026-02-03 | 2026-06-03 |  |  |  |  |  |  |  |
| DAM3-E-SA-A-1170 |  | BUILDING SECTIONS | 5d | 2026-02-03 A | 2026-02-05 A | DAM3-E-SS-A-1170, DAM3-E-SA-A-870 | 100% | 2026-04-08 | 2026-04-13 |  | 03 | 03 |
| DAM3-E-SA-A-830 |  | GROUND FLOOR LAYOUT PLAN | 2d | 2026-02-03 A | 2026-02-08 A | DAM3-E-SS-A-830 | 100% | 2026-03-28 | 2026-03-29 | Engineer [4 h]; Draftman [4 h] | 03 | 03 |
| DAM3-E-SA-A-840 |  | GROUND FLOOR ENLARGED LAYOUT PLAN | 2d | 2026-02-03 A | 2026-02-08 A | DAM3-E-SS-A-840, DAM3-E-SA-A-830 | 100% | 2026-03-30 | 2026-03-31 | Engineer [4 h]; Draftman [4 h] | 03 | 03 |
| DAM3-E-SA-A-860 |  | ELEVATIONS (SHEET 01 0F 02) | 2d | 2026-02-03 A | 2026-02-05 A | DAM3-E-SS-A-860, DAM3-E-SA-A-850 | 100% | 2026-04-04 | 2026-04-05 | Engineer [4 h]; Draftman [4 h] | 03 | 03 |
| DAM3-E-SA-A-870 |  | ELEVATIONS (SHEET 01 0F 02) | 2d | 2026-02-03 A | 2026-02-05 A | DAM3-E-SS-A-870, DAM3-E-SA-A-860 | 100% | 2026-04-06 | 2026-04-07 | Engineer [4 h]; Draftman [4 h] | 03 | 03 |
| DAM3-E-SA-A-880 |  | WALL SECTIONS | 2d | 2026-02-03 A | 2026-02-05 A | DAM3-E-SS-A-880 | 100% | 2026-04-09 | 2026-04-11 | Engineer [4 h]; Draftman [4 h] | 03 | 03 |
| DAM3-E-SA-A-890 |  | CEILING LAYOUT PLAN | 2d | 2026-02-05 A | 2026-02-09 A | DAM3-E-SS-A-890 | 100% | 2026-04-12 | 2026-04-13 | Engineer [4 h]; Draftman [4 h] | 03 | 03 |
| DAM3-E-SA-A-900 |  | FINISHING LAYOUT PLAN | 2d | 2026-02-09 A | 2026-02-14 A | DAM3-E-SS-A-900, DAM3-E-SA-A-890, DAM3-E-SA-A-880 | 100% | 2026-04-14 | 2026-04-15 | Engineer [4 h]; Draftman [4 h] | 03 | 03 |
| DAM3-E-SA-A-910 |  | TOILET DETAILS | 2d | 2026-02-11 A | 2026-02-25 A | DAM3-E-SS-A-910, DAM3-E-SA-A-1170 | 100% | 2026-04-16 | 2026-04-18 | Engineer [4 h]; Draftman [4 h] | 03 | 03 |
| DAM3-E-SA-A-920 |  | DOORS & WINDOWS SCHEDULE | 2d | 2026-02-11 A | 2026-02-25 A | DAM3-E-SS-A-920, DAM3-E-SA-C-880 | 100% | 2026-04-19 | 2026-04-20 | Engineer [4 h]; Draftman [4 h] | 03 | 03 |
| DAM3-E-SA-A-930 |  | MISCELLANEOUS DETAILS - 01 | 2d | 2026-02-11 A | 2026-02-25 A | DAM3-E-SS-A-930, DAM3-E-SA-C-890 | 100% | 2026-04-21 | 2026-04-22 | Engineer [4 h]; Draftman [4 h] | 03 | 03 |
| DAM3-E-SA-A-940 |  | MISCELLANEOUS DETAILS - 02 | 2d | 2026-02-11 A | 2026-02-25 A | DAM3-E-SS-A-940, DAM3-E-SA-A-910, DAM3-E-SA-A-900 | 100% | 2026-04-02 | 2026-04-05 | Engineer [4 h]; Draftman [4 h] | 03 | 03 |
| DAM3-E-SA-A-950 |  | SIGNAGE LOCATION PLAN | 2d | 2026-02-11 A | 2026-02-25 A | DAM3-E-SS-A-950, DAM3-E-SA-A-930, DAM3-E-SA-A-920 | 100% | 2026-04-26 | 2026-04-27 | Engineer [8 h]; Draftman [8 h] | 03 | 03 |
| DAM3-E-SA-A-960 |  | SIGNAGE DESIGN DETAILS | 2d | 2026-02-11 A | 2026-02-25 A | DAM3-E-SS-A-960, DAM3-E-SA-A-940 | 100% | 2026-04-28 | 2026-04-29 | Engineer [8 h]; Draftman [8 h] | 03 | 03 |
| DAM3-E-SA-A-850 |  | SKYLIGHT DISTRIBUTION - ROOF LAYOUT PLAN | 2d | 2026-06-02 A | 2026-06-03 A | DAM3-E-SS-A-850, DAM3-E-SA-A-840 | 100% | 2026-06-24 | 2026-06-25 | Engineer [4 h]; Draftman [4 h] | 03 | 03 |

| ID | WBS | Activity | Duration | Start | Finish | Predecessors | Complete | Planned start | Planned finish | Resources | Phasing Code Category | Discipline |
| --- | --- | --- | --- | --- | --- | --- | --- | --- | --- | --- | --- | --- |
|  | 3 | **MECHANICAL** |  | 2026-02-04 | 2026-06-09 |  |  |  |  |  |  |  |
| DAM3-E-SA-M-650 |  | SCHEMATIC RISER DIAGRAM PLUMBING-DRAINAGE | 2d | 2026-02-04 A | 2026-03-03 A | DAM3-E-SS-M-650, DAM3-E-SA-M-640, DAM3-E-SA-M-630 | 100% | 2026-04-11 | 2026-04-13 | Engineer [4 h]; Draftman [4 h] | 03 | 04 |
| DAM3-E-SA-M-660 |  | SCHEMATIC RISER DIAGRAM PLUMBING-WATER | 2d | 2026-02-04 A | 2026-04-13 A | DAM3-E-SS-M-660, DAM3-E-SA-M-650 | 100% | 2026-05-04 | 2026-05-06 | Engineer [4 h]; Draftman [4 h] | 03 | 04 |
| DAM3-E-SA-M-670 |  | GENERAL MISELLANEOUS DETAILS PLUMBING | 2d | 2026-02-04 A | 2026-03-03 A | DAM3-E-SS-M-670 | 100% | 2026-04-15 | 2026-04-18 | Engineer [4 h]; Draftman [4 h] | 03 | 04 |
| DAM3-E-SA-M-680 |  | GENERAL MISELLANEOUS DETAILS PLUMBING | 2d | 2026-02-04 A | 2026-03-03 A | DAM3-E-SS-M-680, DAM3-E-SA-M-660 | 100% | 2026-04-18 | 2026-04-20 | Engineer [4 h]; Draftman [4 h] | 03 | 04 |
| DAM3-E-SA-M-750 |  | GENERAL-INSTRUMENTATION & CONTROL | 2d | 2026-02-04 A | 2026-06-09 A | DAM3-E-SS-M-750 | 100% | 2026-05-04 | 2026-05-06 | Engineer [8 h]; Draftman [8 h] | 03 | 04 |
| DAM3-E-SA-M-780 |  | SCHEMATIC RISER DIAGRAM FIREFIGHTING | 2d | 2026-02-04 A | 2026-06-09 A | DAM3-E-SS-M-780 | 100% | 2026-05-11 | 2026-05-13 | Engineer [8 h]; Draftman [8 h] | 03 | 04 |
| DAM3-E-SA-M-790 |  | GENERAL-MISCELLANEOUS DETAILS- FIRE FIGHTING | 2d | 2026-02-04 A | 2026-06-09 A | DAM3-E-SS-M-790 | 100% | 2026-05-13 | 2026-05-16 | Engineer [8 h]; Draftman [8 h] | 03 | 04 |
| DAM3-E-SA-M-800 |  | MISCELLANEOUS DETAILS | 2d | 2026-02-04 A | 2026-03-03 A | DAM3-E-SS-M-800 | 100% | 2026-04-30 | 2026-05-03 | Engineer [8 h]; Draftman [8 h] | 03 | 04 |
| DAM3-E-SA-M-760 |  | GENERAL MISCELLANEOUS DETAILS - HVAC | 2d | 2026-02-05 A | 2026-03-03 A | DAM3-E-SS-M-760 | 100% | 2026-05-06 | 2026-05-09 | Engineer [8 h]; Draftman [8 h] | 03 | 04 |
| DAM3-E-SA-M-610 |  | TOILETS DETAILS PLUMBING-DRAINAGE | 2d | 2026-03-11 A | 2026-05-10 A | DAM3-E-SS-M-610, DAM3-E-SA-M-600 | 100% | 2026-04-07 | 2026-04-08 | Engineer [4 h]; Draftman [4 h] | 03 | 04 |
| DAM3-E-SA-M-640 |  | TOILET DETAILS PLUMBING-WATER | 2d | 2026-03-11 A | 2026-05-10 A | DAM3-E-SS-M-640, DAM3-E-SA-M-620 | 100% | 2026-04-14 | 2026-04-15 | Engineer [4 h]; Draftman [4 h] | 03 | 04 |
| DAM3-E-SA-M-770 |  | TYPICAL GROUND FLOOR PLAN FIREFIGHTING | 2d | 2026-03-14 A | 2026-05-12 A | DAM3-E-SS-M-770 | 100% | 2026-04-28 | 2026-04-29 | Engineer [8 h]; Draftman [8 h] | 03 | 04 |
| DAM3-E-SA-M-620 |  | TYPICAL ROOF PLUMBING PLAN | 2d | 2026-03-16 A | 2026-05-12 A | DAM3-E-SS-M-620, DAM3-E-SA-M-610 | 100% | 2026-04-09 | 2026-04-11 | Engineer [4 h]; Draftman [4 h] | 03 | 04 |
| DAM3-E-SA-M-600 |  | TYPICAL GROUND FLOOR PLAN-PLUMBING- DRAINAGE | 2d | 2026-03-17 A | 2026-05-12 A | DAM3-E-SS-M-600 | 100% | 2026-04-09 | 2026-04-11 | Engineer [4 h]; Draftman [4 h] | 03 | 04 |
| DAM3-E-SA-M-630 |  | GROUND FLOOR WATER SUPPLY PLAN | 2d | 2026-03-17 A | 2026-05-12 A | DAM3-E-SS-M-630, DAM3-E-SA-M-610 | 100% | 2026-04-14 | 2026-04-15 | Engineer [4 h]; Draftman [4 h] | 03 | 04 |
| DAM3-E-SA-M-690 |  | SCHEDULE- PLUMBING | 2d | 2026-03-17 A | 2026-05-11 A | DAM3-E-SS-M-690 | 100% | 2026-05-25 | 2026-05-30 | Engineer [4 h]; Draftman [4 h] | 03 | 04 |
| DAM3-E-SA-M-720 |  | SCHEDULES | 2d | 2026-03-17 A | 2026-05-11 A | DAM3-E-SS-M-720, DAM3-E-SA-A-950 | 100% | 2026-06-06 | 2026-06-08 | Engineer [8 h]; Draftman [8 h] | 03 | 04 |
| DAM3-E-SA-M-730 |  | GROUND FLOOR PLAN-HVAC SYSTEM | 2d | 2026-03-26 A | 2026-05-12 A | DAM3-E-SS-M-730, DAM3-E-SA-A-960 | 100% | 2026-05-09 | 2026-05-10 | Engineer [8 h]; Draftman [8 h] | 03 | 04 |
| DAM3-E-SA-M-740 |  | TYPICAL ROOF HVAC PLAN | 2d | 2026-03-26 A | 2026-05-12 A | DAM3-E-SS-M-740 | 100% | 2026-05-02 | 2026-05-04 | Engineer [8 h]; Draftman [8 h] | 03 | 04 |
| DAM3-E-SA-M-700 |  | PUMP ROOM LAYOUT | 2d | 2026-04-16 A | 2026-05-17 A | DAM3-E-SS-M-700 | 100% | 2026-05-02 | 2026-05-03 | Engineer [8 h]; Draftman [8 h] | 03 | 04 |
| DAM3-E-SA-M-710 |  | PUMP ROOM 3D & SECTIONS VIEW | 2d | 2026-04-21 A | 2026-05-17 A | DAM3-E-SS-M-710, DAM3-E-SA-M-670 | 100% | 2026-05-04 | 2026-05-05 | Engineer [8 h]; Draftman [8 h] | 03 | 04 |
|  | 4 | **ELECTRICAL** |  | 2026-02-09 | 2026-06-28 |  |  |  |  |  |  |  |
| DAM3-E-SA-E-1000 |  | ROOF FLOOR LIGHTING PLAN | 2d | 2026-02-09 A | 2026-02-17 A | DAM3-E-SS-E-1000, DAM3-E-SA-E-980, DAM3-E-SA-E-960 | 100% | 2026-04-11 | 2026-04-13 | Engineer [4 h]; Draftman [4 h] | 03 | 05 |
| DAM3-E-SA-E-1060 |  | ROOF FLOOR LIGHTENING PLAN | 2d | 2026-02-09 A | 2026-02-17 A | DAM3-E-SS-E-1060 | 100% | 2026-04-21 | 2026-04-22 | Engineer [8 h]; Draftman [8 h] | 03 | 05 |
| DAM3-E-SA-E-1130 |  | GROUND FLOOR POWER PLAN | 2d | 2026-02-09 A | 2026-02-17 A | DAM3-E-SS-E-1130 | 100% | 2026-05-12 | 2026-05-13 | Engineer [8 h]; Draftman [8 h] | 03 | 05 |
| DAM3-E-SA-E-1140 |  | POWER FOR MECHANICAL | 2d | 2026-02-09 A | 2026-02-18 A | DAM3-E-SS-E-1140 | 100% | 2026-05-13 | 2026-05-16 | Engineer [8 h]; Draftman [8 h] | 03 | 05 |
| DAM3-E-SA-E-1150 |  | GROUND FLOOR LIGHTING PLAN | 2d | 2026-02-09 A | 2026-02-17 A | DAM3-E-SS-E-1150 | 100% | 2026-05-14 | 2026-05-16 | Engineer [8 h]; Draftman [8 h] | 03 | 05 |
| DAM3-E-SA-E-940 |  | GROUND FLOOR POWER PLAN | 2d | 2026-02-09 A | 2026-02-10 A | DAM3-E-SS-E-940 | 100% | 2026-03-28 | 2026-03-30 | Engineer [4 h]; Draftman [4 h] | 03 | 05 |
| DAM3-E-SA-E-950 |  | GROUND FLOOR POWER FOR MECHANICAL | 2d | 2026-02-09 A | 2026-04-18 A | DAM3-E-SS-E-950, DAM3-E-SA-E-940 | 100% | 2026-03-30 | 2026-04-01 | Engineer [4 h]; Draftman [4 h] | 03 | 05 |
| DAM3-E-SA-E-960 |  | ROOF FLOOR POWER FOR MECHANICAL | 2d | 2026-02-09 A | 2026-04-15 A | DAM3-E-SS-E-960 | 100% | 2026-04-01 | 2026-04-04 | Engineer [4 h]; Draftman [4 h] | 03 | 05 |
| DAM3-E-SA-E-990 |  | GROUND FLOOR LIGHTING PLAN | 2d | 2026-02-09 A | 2026-02-17 A | DAM3-E-SS-E-990, DAM3-E-SA-E-970 | 100% | 2026-04-08 | 2026-04-11 | Engineer [4 h]; Draftman [4 h] | 03 | 05 |
| DAM3-E-SA-E-1030 |  | GROUND FLOOR CCTV PLAN | 2d | 2026-03-01 A | 2026-03-03 A | DAM3-E-SS-E-1030 | 100% | 2026-04-07 | 2026-04-08 | Engineer [8 h]; Draftman [8 h] | 03 | 05 |
| DAM3-E-SA-E-1040 |  | GROUND FLOOR DATA & TELECOM PLAN | 2d | 2026-03-01 A | 2026-03-03 A | DAM3-E-SS-E-1040 | 100% | 2026-04-09 | 2026-04-11 | Engineer [8 h]; Draftman [8 h] | 03 | 05 |
| DAM3-E-SA-E-1050 |  | GROUND FLOOR GROUNDING PLAN | 2d | 2026-03-01 A | 2026-03-03 A | DAM3-E-SS-E-1050 | 100% | 2026-04-19 | 2026-04-20 | Engineer [8 h]; Draftman [8 h] | 03 | 05 |
| DAM3-E-SA-E-1120 |  | ELECTRICAL DETAILS | 2d | 2026-03-01 A | 2026-03-03 A | DAM3-E-SS-E-1120 | 100% | 2026-05-10 | 2026-05-11 | Engineer [8 h]; Draftman [8 h] | 03 | 05 |
| DAM3-E-SA-E-1160 |  | GROUND FLOOR GROUNDING PLAN | 2d | 2026-03-01 A | 2026-03-03 A | DAM3-E-SS-E-1160 | 100% | 2026-05-05 | 2026-05-06 | Engineer [32 h]; Draftman [32 h] | 03 | 05 |
| DAM3-E-SA-E-1180 |  | ELECTRICAL DETAILS | 2d | 2026-03-01 A | 2026-03-03 A | DAM3-E-SS-E-1180 | 100% | 2026-05-17 | 2026-05-18 | Engineer [32 h]; Draftman [32 h] | 03 | 05 |
| DAM3-E-SA-E-1010 |  | GOUND FLOOR ACCESS CONTROL | 2d | 2026-03-29 A | 2026-04-18 A | DAM3-E-SS-E-1010 | 100% | 2026-04-12 | 2026-04-13 | Engineer [4 h]; Draftman [4 h] | 03 | 05 |
| DAM3-E-SA-E-1020 |  | GROUND FLOOR FIRE ALARM PLAN | 2d | 2026-03-29 A | 2026-04-15 A | DAM3-E-SS-E-1020 | 100% | 2026-04-14 | 2026-04-15 | Engineer [4 h]; Draftman [4 h] | 03 | 05 |
| DAM3-E-SA-E-1070 |  | POWER RISER DIAGRAM | 2d | 2026-03-29 A | 2026-06-23 A | DAM3-E-SS-E-1070 | 100% | 2026-04-21 | 2026-04-22 | Engineer [8 h]; Draftman [8 h] | 03 | 05 |
| DAM3-E-SA-E-1080 |  | FIRE ALARM RISER DIAGRAM | 2d | 2026-03-29 A | 2026-05-11 A | DAM3-E-SS-E-1080 | 100% | 2026-04-21 | 2026-04-22 | Engineer [8 h]; Draftman [8 h] | 03 | 05 |
| DAM3-E-SA-E-1090 |  | DATA & TELECOME RISER DIAGRAM | 2d | 2026-03-29 A | 2026-03-30 A | DAM3-E-SS-E-1090 | 100% | 2026-04-26 | 2026-04-27 | Engineer [8 h]; Draftman [8 h] | 03 | 05 |
| DAM3-E-SA-E-1100 |  | ACCESS CONTROL RISER DIAGRAM | 2d | 2026-03-29 A | 2026-03-30 A | DAM3-E-SS-E-1100 | 100% | 2026-04-28 | 2026-04-29 | Engineer [8 h]; Draftman [8 h] | 03 | 05 |
| DAM3-E-SA-E-1110 |  | SCHEDULES | 2d | 2026-03-29 A | 2026-06-23 A | DAM3-E-SS-E-1110 | 100% | 2026-04-30 | 2026-05-02 | Engineer [8 h]; Draftman [8 h] | 03 | 05 |
| DAM3-E-SA-E-970 |  | ROOF FLOOR POWER | 2d | 2026-04-08 A | 2026-04-09 A | DAM3-E-SS-E-970, DAM3-E-SA-E-950 | 100% | 2026-06-22 | 2026-06-23 | Engineer [4 h]; Draftman [4 h] | 03 | 05 |
| DAM3-E-SA-E-1170 |  | RISER DIAGRAM | 2d | 2026-04-27 A | 2026-06-23 A | DAM3-E-SS-E-1170 | 100% | 2026-05-16 | 2026-05-17 | Engineer [32 h]; Draftman [32 h] | 03 | 05 |
| DAM3-E-SA-E-980 |  | PV SYSTEM CALCULATION | 2d | 2026-06-25 A | 2026-06-28 A | DAM3-E-SS-E-980 | 100% | 2026-07-23 | 2026-07-25 | Engineer [4 h]; Draftman [4 h] | 03 | 05 |

| ID | WBS | Activity | Duration | Start | Finish | Predecessors | Complete | Planned start | Planned finish | Resources | Phasing Code Category | Discipline |
| --- | --- | --- | --- | --- | --- | --- | --- | --- | --- | --- | --- | --- |
|  | 1 | **ROAD DRAWINGS** |  | 2026-01-20 | 2026-07-05 |  |  |  |  |  |  |  |
| DAM3-E-SA-R-780 |  | TOPOGRAPHIC SURVEY-CONTOURS MAP | 2d | 2026-01-20 A | 2026-01-22 A | DAM3-E-SS-R-780 | 100% | 2026-03-08 | 2026-03-09 | Engineer [32 h]; Draftman [32 h] | 03 | 07 |
| DAM3-E-SA-R-730 |  | GRADING LAYOUT PLAN | 2d | 2026-02-03 A | 2026-05-03 A | DAM3-E-SS-R-730 | 100% | 2026-04-30 | 2026-05-02 | Engineer [32 h]; Draftman [32 h] | 03 | 07 |
| DAM3-E-SA-R-880 |  | GENERAL SITE PLAN - OVERALL | 2d | 2026-03-08 A | 2026-05-20 A | DAM3-E-SS-R-880, DAM3-E-SA-R-870 | 100% | 2026-04-16 | 2026-04-18 | Engineer [4 h]; Draftman [4 h] | 03 | 07 |
| DAM3-E-SA-R-890 |  | SITE SETTING-OUT PLAN - OVERALL | 2d | 2026-03-08 A | 2026-05-03 A | DAM3-E-SS-R-890, DAM3-E-SA-R-880 | 100% | 2026-04-19 | 2026-04-20 | Engineer [4 h]; Draftman [4 h] | 03 | 07 |
| DAM3-E-SA-R-900 |  | GENERAL LANDSCAPE LAYOUT | 2d | 2026-03-08 A | 2026-05-06 A | DAM3-E-SS-R-900, DAM3-E-SA-R-890 | 100% | 2026-04-21 | 2026-04-22 | Engineer [4 h]; Draftman [4 h] | 03 | 07 |
| DAM3-E-SA-R-910 |  | GENERAL HARDSCAPE LAYOUT | 2d | 2026-03-08 A | 2026-05-07 A | DAM3-E-SS-R-910, DAM3-E-SA-R-900 | 100% | 2026-04-23 | 2026-04-25 | Engineer [4 h]; Draftman [4 h] | 03 | 07 |
| DAM3-E-SA-R-920 |  | GENERAL SOFTSCAPE LAYOUT | 2d | 2026-03-08 A | 2026-05-09 A | DAM3-E-SS-R-920, DAM3-E-SA-R-910 | 100% | 2026-04-26 | 2026-04-27 | Engineer [4 h]; Draftman [4 h] | 03 | 07 |
| DAM3-E-SA-R-960 |  | LANDSCAPE SCHEDULES | 2d | 2026-03-08 A | 2026-05-06 A | DAM3-E-SS-R-960, DAM3-E-SA-R-950 | 100% | 2026-05-05 | 2026-05-06 |  | 03 | 07 |
| DAM3-E-SA-R-930 |  | PUMP ROOM DETAILS | 2d | 2026-03-14 A | 2026-05-06 A | DAM3-E-SS-R-930, DAM3-E-SA-R-920 | 100% | 2026-04-25 | 2026-04-26 | Engineer [4 h]; Draftman [4 h] | 03 | 07 |
| DAM3-E-SA-R-740 |  | ROAD LAYOUT PLAN | 2d | 2026-03-16 A | 2026-04-29 A | DAM3-E-SS-R-740 | 100% | 2026-05-05 | 2026-05-06 | Engineer [32 h]; Draftman [32 h] | 03 | 07 |
| DAM3-E-SA-R-750 |  | TYPICAL CROSS SECTIONS - KEY PLAN | 2d | 2026-03-16 A | 2026-05-04 A | DAM3-E-SS-R-750 | 100% | 2026-03-26 | 2026-03-28 | Engineer [32 h]; Draftman [32 h] | 03 | 07 |
| DAM3-E-SA-R-760 |  | TYPICAL CROSS SECTIONS | 2d | 2026-03-16 A | 2026-05-04 A | DAM3-E-SS-R-760 | 100% | 2026-03-29 | 2026-03-30 | Engineer [32 h]; Draftman [32 h] | 03 | 07 |
| DAM3-E-SA-R-770 |  | ROAD PROFILES | 2d | 2026-03-16 A | 2026-04-29 A | DAM3-E-SS-R-770 | 100% | 2026-04-12 | 2026-04-13 | Engineer [32 h]; Draftman [32 h] | 03 | 07 |
| DAM3-E-SA-R-940 |  | GENERAL DETAILS | 2d | 2026-03-18 A | 2026-05-11 A | DAM3-E-SS-R-940, DAM3-E-SA-R-930 | 100% | 2026-05-02 | 2026-05-03 | Engineer [4 h]; Draftman [4 h] | 03 | 07 |
| DAM3-E-SA-R-830 |  | SIGNING & MARKING LAYOUT PLAN | 2d | 2026-04-21 A | 2026-04-29 A | DAM3-E-SS-R-830, DAM3-E-SA-R-820 | 100% | 2026-05-12 | 2026-05-13 | Engineer [32 h]; Draftman [32 h] | 03 | 07 |
| DAM3-E-SA-R-840 |  | ROAD STANDARD DETAILS-TYPICAL PAVEMENT DETAILS | 2d | 2026-04-21 A | 2026-05-04 A | DAM3-E-SS-R-840, DAM3-E-SA-R-830 | 100% | 2026-05-14 | 2026-05-16 | Engineer [32 h]; Draftman [32 h] | 03 | 07 |
| DAM3-E-SA-R-850 |  | ROAD STANDARD DETAILS-TYPICAL CURB DETAILS | 2d | 2026-04-21 A | 2026-05-04 A | DAM3-E-SS-R-850, DAM3-E-SA-R-840 | 100% | 2026-05-17 | 2026-05-18 | Engineer [4 h]; Draftman [4 h] | 03 | 07 |
| DAM3-E-SA-R-860 |  | ROAD STANDARD DETAILS-ROAD SIGN DETAILS | 2d | 2026-04-21 A | 2026-05-04 A | DAM3-E-SS-R-860, DAM3-E-SA-R-850 | 100% | 2026-05-19 | 2026-05-20 | Engineer [4 h]; Draftman [4 h] | 03 | 07 |
| DAM3-E-SA-R-870 |  | ROAD STANDARD DETAILS-ROAD MARKING DETAILS | 2d | 2026-04-21 A | 2026-05-04 A | DAM3-E-SS-R-870, DAM3-E-SA-R-860 | 100% | 2026-05-21 | 2026-05-23 | Engineer [4 h]; Draftman [4 h] | 03 | 07 |
| DAM3-E-SA-R-790 |  | ALIGNMENT & CURB SETTING OUT | 2d | 2026-06-14 A | 2026-06-14 A | DAM3-E-SS-R-790 | 100% | 2026-06-18 | 2026-06-20 | Engineer [32 h]; Draftman [32 h] | 03 | 07 |
| DAM3-E-SA-R-800 |  | ALIGNMENT & CURB SETTING OUT TABLES | 2d | 2026-06-14 A | 2026-06-14 A | DAM3-E-SS-R-800, DAM3-E-SA-R-790 | 100% | 2026-06-21 | 2026-06-22 | Engineer [32 h]; Draftman [32 h] | 03 | 07 |
| DAM3-E-SA-R-810 |  | ALIGNMNET GEOMETRIC DATA | 2d | 2026-06-14 A | 2026-06-14 A | DAM3-E-SS-R-810, DAM3-E-SA-R-800 | 100% | 2026-06-23 | 2026-06-24 | Engineer [32 h]; Draftman [32 h] | 03 | 07 |
| DAM3-E-SA-R-820 |  | SWEPT PATH LAYOUT PLAN | 2d | 2026-06-14 A | 2026-06-14 A | DAM3-E-SS-R-820, DAM3-E-SA-R-810 | 100% | 2026-06-25 | 2026-06-27 | Engineer [32 h]; Draftman [32 h] | 03 | 07 |
| DAM3-E-SA-R-950 |  | LANDSCAPE DETAILS | 2d | 2026-07-01 A | 2026-07-05 A | DAM3-E-SS-R-950, DAM3-E-SA-R-940 | 100% | 2026-07-27 | 2026-07-28 | Engineer [4 h]; Draftman [4 h] | 03 | 07 |

| ID | WBS | Activity | Duration | Start | Finish | Predecessors | Complete | Planned start | Planned finish | Resources | Phasing Code Category | Discipline |
| --- | --- | --- | --- | --- | --- | --- | --- | --- | --- | --- | --- | --- |
|  | 6 | **EXTERNAL** |  | 2026-02-10 | 2026-06-08 |  |  |  |  |  |  |  |
| DAM3-E-SA-EX-1000 |  | WASHOUT CHAMBER DETAILS | 2d | 2026-02-10 A | 2026-05-11 A | DAM3-E-SA-EX-990 | 100% | 2026-05-23 | 2026-05-25 |  | 03 | 07 |
| DAM3-E-SA-EX-1010 |  | AIR RELEASE VALVE CHAMBER DETAILS | 2d | 2026-02-10 A | 2026-05-25 A | DAM3-E-SA-EX-1000 | 100% | 2026-05-25 | 2026-05-31 |  | 03 | 07 |
| DAM3-E-SA-EX-1020 |  | THRUST BLOCK DETAILS (SHEET 1 OF 4) | 2d | 2026-02-10 A | 2026-03-18 A | DAM3-E-SA-EX-1010 | 100% | 2026-05-31 | 2026-06-02 |  | 03 | 07 |
| DAM3-E-SA-EX-1030 |  | THRUST BLOCK DETAILS (SHEET 2 OF 4) | 2d | 2026-02-10 A | 2026-03-18 A | DAM3-E-SA-EX-1020 | 100% | 2026-06-02 | 2026-06-04 |  | 03 | 07 |
| DAM3-E-SA-EX-1040 |  | THRUST BLOCK DETAILS (SHEET 3 OF 4) | 2d | 2026-02-10 A | 2026-03-18 A | DAM3-E-SA-EX-1030 | 100% | 2026-06-04 | 2026-06-07 |  | 03 | 07 |
| DAM3-E-SA-EX-1050 |  | THRUST BLOCK DETAILS (SHEET 4 OF 4) | 2d | 2026-02-10 A | 2026-03-18 A | DAM3-E-SA-EX-1040, DAM3-E-SS-EX-1050 | 100% | 2026-06-07 | 2026-06-09 |  | 03 | 07 |
| DAM3-E-SA-EX-730 |  | PIPE TRENCH DETAILS | 2d | 2026-02-10 A | 2026-05-10 A | DAM3-E-SS-EX-730, DAM3-E-SA-EX-710, DAM3-E-SA-EX-710 FF | 100% | 2026-04-04 | 2026-04-06 | Engineer [4 h]; Draftman [4 h] | 03 | 07 |
| DAM3-E-SA-EX-740 |  | BURIED GATE VALVE DETAILS | 2d | 2026-02-10 A | 2026-05-31 A | DAM3-E-SS-EX-740, DAM3-E-SA-EX-720, DAM3-E-SA-EX-700 | 100% | 2026-03-31 | 2026-04-02 | Engineer [4 h]; Draftman [4 h] | 03 | 07 |
| DAM3-E-SA-EX-770 |  | WASHOUT CHAMBER DETAILS | 2d | 2026-02-10 A | 2026-05-11 A | DAM3-E-SS-EX-770, DAM3-E-SA-EX-750 | 100% | 2026-04-07 | 2026-04-09 | Engineer [4 h]; Draftman [4 h] | 03 | 07 |
| DAM3-E-SA-EX-780 |  | AIR RELEASE VALVE CHAMBER DETAILS | 2d | 2026-02-10 A | 2026-05-25 A | DAM3-E-SS-EX-780, DAM3-E-SA-EX-760 | 100% | 2026-04-09 | 2026-04-12 | Engineer [4 h]; Draftman [4 h] | 03 | 07 |
| DAM3-E-SA-EX-810 |  | THRUST BLOCK DETAILS (SHEET 1 OF 4) | 2d | 2026-02-10 A | 2026-03-18 A | DAM3-E-SS-EX-810, DAM3-E-SA-EX-800 | 100% | 2026-04-26 | 2026-04-28 | Engineer [8 h]; Draftman [8 h] | 03 | 07 |
| DAM3-E-SA-EX-820 |  | THRUST BLOCK DETAILS (SHEET 2 OF 4) | 2d | 2026-02-10 A | 2026-03-18 A | DAM3-E-SA-EX-810, DAM3-E-SS-EX-820 | 100% | 2026-04-28 | 2026-04-30 | Engineer [8 h]; Draftman [8 h] | 03 | 07 |
| DAM3-E-SA-EX-830 |  | THRUST BLOCK DETAILS (SHEET 3 OF 4) | 2d | 2026-02-10 A | 2026-03-18 A | DAM3-E-SS-EX-830, DAM3-E-SA-EX-790 | 100% | 2026-04-22 | 2026-04-25 | Engineer [8 h]; Draftman [8 h] | 03 | 07 |
| DAM3-E-SA-EX-840 |  | THRUST BLOCK DETAILS (SHEET 4 OF 4) | 2d | 2026-02-10 A | 2026-03-18 A | DAM3-E-SS-EX-840 | 100% | 2026-04-22 | 2026-04-25 | Engineer [8 h]; Draftman [8 h] | 03 | 07 |
| DAM3-E-SA-EX-870 |  | GENERAL NOTES | 2d | 2026-02-10 A | 2026-03-18 A | DAM3-E-SS-EX-870, DAM3-E-SA-EX-820, DAM3-E-SA-EX-850, DAM3-E-SA-EX-850 FF | 100% | 2026-04-30 | 2026-05-03 |  | 03 | 07 |
| DAM3-E-SA-EX-880 |  | PIPE TRENCHES DETAILS (1) | 2d | 2026-02-10 A | 2026-03-18 A | DAM3-E-SS-EX-880 | 100% | 2026-05-02 | 2026-05-04 |  | 03 | 07 |
| DAM3-E-SA-EX-890 |  | PIPE TRENCHES DETAILS (2) | 2d | 2026-02-10 A | 2026-03-18 A | DAM3-E-SS-EX-890 | 100% | 2026-04-21 | 2026-04-23 |  | 03 | 07 |
| DAM3-E-SA-EX-900 |  | CAST IN PLACE MANHOLE DETAILS FOR DEPTH < 6000MM (TYPE-A) | 2d | 2026-02-10 A | 2026-05-11 A | DAM3-E-SS-EX-900 | 100% | 2026-05-06 | 2026-05-09 |  | 03 | 07 |
| DAM3-E-SA-EX-920 |  | BACKDROP DETAIL OF PRECAST MANHOLE DEPTH FROM 3000MM TO 6000MM | 2d | 2026-02-10 A | 2026-05-19 A | DAM3-E-SS-EX-920 | 100% | 2026-04-23 | 2026-04-26 |  | 03 | 07 |
| DAM3-E-SA-EX-930 |  | BACKDROP DETAIL OF PRECAST MANHOLE DEPTH < 3000MM | 2d | 2026-02-10 A | 2026-05-19 A | DAM3-E-SS-EX-930 | 100% | 2026-05-06 | 2026-05-09 |  | 03 | 07 |
| DAM3-E-SA-EX-960 |  | PIPE TRENCH DETAILS | 2d | 2026-02-10 A | 2026-03-18 A | DAM3-E-SS-EX-960, DAM3-E-SA-EX-940 | 100% | 2026-04-28 | 2026-04-30 |  | 03 | 07 |
| DAM3-E-SA-EX-970 |  | BURIED GATE VALVE DETAILS | 2d | 2026-02-10 A | 2026-05-31 A | DAM3-E-SS-EX-970, DAM3-E-SA-EX-950 | 100% | 2026-05-16 | 2026-05-18 |  | 03 | 07 |
| DAM3-E-SA-EX-910 |  | CAST IN PLACE MANHOLE DETAILS FOR DEPTH < 6000MM (TYPE-B) | 2d | 2026-02-12 A | 2026-05-11 A | DAM3-E-SS-EX-910 | 100% | 2026-05-06 | 2026-05-09 |  | 03 | 07 |
| DAM3-E-SA-EX-940 |  | PRECAST MANHOLE DETAILS | 2d | 2026-04-15 A | 2026-06-08 A | DAM3-E-SS-EX-940 | 100% | 2026-05-23 | 2026-05-24 |  | 03 | 07 |
| DAM3-E-SA-EX-750 |  | SINGLE VALVE CHAMBER DETAILS | 2d | 2026-04-21 A | 2026-04-27 A | DAM3-E-SS-EX-750 | 100% | 2026-05-16 | 2026-05-17 | Engineer [4 h]; Draftman [4 h] | 03 | 07 |
| DAM3-E-SA-EX-760 |  | DOUBLE VALVE CHAMBER DETAILS | 2d | 2026-04-21 A | 2026-04-27 A | DAM3-E-SS-EX-760, DAM3-E-SA-EX-730, DAM3-E-SA-EX-740 | 100% | 2026-05-18 | 2026-05-19 | Engineer [4 h]; Draftman [4 h] | 03 | 07 |
| DAM3-E-SA-EX-980 |  | SINGLE VALVE CHAMBER DETAILS | 2d | 2026-04-21 A | 2026-04-27 A | DAM3-E-SA-EX-970, DAM3-E-SA-EX-960 | 100% | 2026-06-04 | 2026-06-07 |  | 03 | 07 |
| DAM3-E-SA-EX-990 |  | DOUBLE VALVE CHAMBER DETAILS | 2d | 2026-04-21 A | 2026-04-27 A | DAM3-E-SA-EX-980 | 100% | 2026-06-07 | 2026-06-09 |  | 03 | 07 |
| DAM3-E-SA-EX-690 |  | POTABLE WATER NETWORK | 2d | 2026-05-11 A | 2026-06-01 A | DAM3-E-SS-EX-690 | 100% | 2026-05-25 | 2026-05-30 | Engineer [4 h]; Draftman [4 h] | 03 | 07 |
| DAM3-E-SA-EX-700 |  | FIRE FIGHTING WATER NETWORK | 2d | 2026-05-11 A | 2026-05-12 A | DAM3-E-SS-EX-700, DAM3-E-SA-EX-690 | 100% | 2026-05-31 | 2026-06-01 | Engineer [4 h]; Draftman [4 h] | 03 | 07 |
| DAM3-E-SA-EX-710 |  | POTABLE WATER NETWORK PROFILES | 2d | 2026-05-11 A | 2026-05-25 A | DAM3-E-SS-EX-710, DAM3-E-SA-EX-700, DAM3-E-SA-EX-690 | 100% | 2026-06-02 | 2026-06-03 | Engineer [4 h]; Draftman [4 h] | 03 | 07 |
| DAM3-E-SA-EX-720 |  | FIRE FIGHTING NETWORK PROFILE | 2d | 2026-05-11 A | 2026-05-12 A | DAM3-E-SS-EX-720 | 100% | 2026-05-25 | 2026-05-30 | Engineer [4 h]; Draftman [4 h] | 03 | 07 |
| DAM3-E-SA-EX-950 |  | IRRIGATION NETWORK LAYOUT SHEET 1 OF 1 | 2d | 2026-05-12 A | 2026-05-17 A | DAM3-E-SS-EX-950, DAM3-E-SA-EX-930 | 100% | 2026-06-02 | 2026-06-04 |  | 03 | 07 |
| DAM3-E-SA-EX-850 |  | SEWAGE NETWORK | 2d | 2026-05-14 A | 2026-05-17 A | DAM3-E-SS-EX-850, DAM3-E-SA-EX-840, DAM3-E-SA-EX-830 | 100% | 2026-06-02 | 2026-06-03 | Engineer [8 h]; Draftman [8 h] | 03 | 07 |
| DAM3-E-SA-EX-860 |  | SEWAGE NETWORK PROFILES | 2d | 2026-05-14 A | 2026-05-17 A | DAM3-E-SS-EX-860 | 100% | 2026-06-02 | 2026-06-03 |  | 03 | 07 |
| DAM3-E-SA-EX-790 |  | FLOW METER DETAILS | 2d | 2026-06-02 A | 2026-06-03 A | DAM3-E-SS-EX-790, DAM3-E-SA-EX-770 | 100% | 2026-06-24 | 2026-06-25 | Engineer [4 h]; Draftman [4 h] | 03 | 07 |
| DAM3-E-SA-EX-800 |  | FLOW METER REINFORCEMENT DETAILS | 2d | 2026-06-02 A | 2026-06-03 A | DAM3-E-SS-EX-800, DAM3-E-SA-EX-780, DAM3-E-SA-R-960 | 100% | 2026-07-01 | 2026-07-02 | Engineer [8 h]; Draftman [8 h] | 03 | 07 |

| ID | WBS | Activity | Duration | Start | Finish | Predecessors | Complete | Planned start | Planned finish | Resources | Phasing Code Category | Discipline |
| --- | --- | --- | --- | --- | --- | --- | --- | --- | --- | --- | --- | --- |
|  | 4 | **PRE QUALIFACTION FOR MATERIALS** |  | 2026-01-15 | 2026-06-11 |  |  |  |  |  |  |  |
|  | 1 | **PREPARATION AND SUBMITTAL** |  | 2026-01-15 | 2026-06-10 |  |  |  |  |  |  |  |
|  | 6 | **STRUCTURAL** |  | 2026-01-15 | 2026-01-19 |  |  |  |  |  |  |  |
| DAM3-E-PS-C-0010 |  | Anti termite | 2d | 2026-01-15 A | 2026-01-15 A | DAM3-MOB-SO.0015 | 100% | 2026-02-17 | 2026-02-19 | Purchaser [32 h] | 03 | 01 |
| DAM3-E-PS-C-0020 |  | Concrete mix | 2d | 2026-01-15 A | 2026-01-15 A | DAM3-E-PS-C-0010 | 100% | 2026-02-19 | 2026-02-23 | Purchaser [32 h] | 03 | 01 |
| DAM3-E-PS-C-0040 |  | Bitumen paint | 2d | 2026-01-15 A | 2026-01-15 A | DAM3-E-PS-C-0030 | 100% | 2026-02-25 | 2026-02-28 | Purchaser [32 h] | 03 | 01 |
| DAM3-E-PS-C-0050 |  | Rebar | 2d | 2026-01-15 A | 2026-01-15 A | DAM3-E-PS-C-0040 | 100% | 2026-03-01 | 2026-03-02 | Purchaser [32 h] | 03 | 01 |
| DAM3-E-PS-C-0030 |  | Polyethylene sheet | 2d | 2026-01-19 A | 2026-01-19 A | DAM3-E-PS-C-0020 | 100% | 2026-02-17 | 2026-02-19 | Purchaser [32 h] | 03 | 01 |
|  | 1 | **ARCHITECTURAL** |  | 2026-02-08 | 2026-06-10 |  |  |  |  |  |  |  |
| DAM3-E-PS-A-0040 |  | Concrete masonry unit (CMU) | 2d | 2026-02-08 A | 2026-02-08 A | DAM3-E-PS-A-0020 | 100% | 2026-02-23 | 2026-02-25 | Purchaser [32 h] | 03 | 03 |
| DAM3-E-PS-A-0130 |  | Windows | 2d | 2026-02-08 A | 2026-02-08 A | DAM3-E-PS-A-0120 | 100% | 2026-05-24 | 2026-05-25 | Purchaser [32 h] | 03 | 03 |
| DAM3-E-PS-A-0200 |  | Aluminum Composite Panel | 2d | 2026-02-10 A | 2026-02-10 A | DAM3-E-PS-A-0190 | 100% | 2026-06-03 | 2026-06-04 | Purchaser [32 h] | 03 | 03 |
| DAM3-E-PS-A-0120 |  | Doors | 2d | 2026-02-16 A | 2026-02-16 A | DAM3-E-PS-A-0070 | 100% | 2026-04-05 | 2026-04-06 | Purchaser [32 h] | 03 | 03 |
| DAM3-E-PS-A-0020 |  | PES -Steel Structure | 2d | 2026-02-19 A | 2026-02-23 A | DAM3-E-PS-C-0010 | 100% |  |  | Purchaser [32 h] | 03 | 03 |
| DAM3-E-PS-A-0190 |  | Gypsum board | 2d | 2026-02-24 A | 2026-02-24 A | DAM3-E-PS-A-0180 | 100% | 2026-03-31 | 2026-04-01 | Purchaser [32 h] | 03 | 03 |
| DAM3-E-PS-A-0050 |  | Steel ladder | 2d | 2026-02-25 A | 2026-02-28 A | DAM3-E-PS-A-0040 | 100% |  |  | Purchaser [32 h] | 03 | 03 |
| DAM3-E-PS-A-0140 |  | Ceramic tiles | 2d | 2026-03-25 A | 2026-03-25 A | DAM3-E-PS-A-0130 | 100% | 2026-04-09 | 2026-04-11 | Purchaser [32 h] | 03 | 03 |
| DAM3-E-PS-A-0180 |  | Internl paint | 2d | 2026-03-25 A | 2026-03-25 A | DAM3-E-PS-A-0170 | 100% | 2026-04-16 | 2026-04-18 | Purchaser [32 h] | 03 | 03 |
| DAM3-E-PS-A-0170 |  | Epoxy paint | 2d | 2026-04-20 A | 2026-04-20 A | DAM3-E-PS-A-0150 | 100% | 2026-06-01 | 2026-06-02 | Purchaser [32 h] | 03 | 03 |
| DAM3-E-PS-A-0150 |  | Granite strip | 2d | 2026-05-03 A | 2026-05-03 A | DAM3-E-PS-A-0140 | 100% | 2026-05-30 | 2026-05-31 | Purchaser [32 h] | 03 | 03 |
| DAM3-E-PS-A-0060 |  | Steel gratings | 2d | 2026-05-19 A | 2026-05-19 A | DAM3-E-PS-A-0050 | 100% | 2026-06-16 | 2026-06-17 | Purchaser [32 h] | 03 | 03 |
| DAM3-E-PS-A-0230 |  | Steel fence and gates | 2d | 2026-05-20 A | 2026-05-20 A | DAM3-E-PS-A-0200 | 100% | 2026-06-21 | 2026-06-22 | Purchaser [32 h] | 03 | 03 |
| DAM3-E-PS-A-0070 |  | Steel rails | 2d | 2026-06-10 A | 2026-06-10 A | DAM3-E-PS-A-0060 | 100% | 2026-06-18 | 2026-06-20 | Purchaser [32 h] | 03 | 03 |
| DAM3-E-PS-A-0240 |  | Identification sign; ID01 & ID02 | 2d | 2026-06-10 A | 2026-06-10 A | DAM3-E-PS-A-0230 | 100% | 2026-06-23 | 2026-06-24 | Purchaser [16 h] | 03 | 03 |

| ID | WBS | Activity | Duration | Start | Finish | Predecessors | Complete | Planned start | Planned finish | Resources | Phasing Code Category | Discipline |
| --- | --- | --- | --- | --- | --- | --- | --- | --- | --- | --- | --- | --- |
|  | 2 | **MECHANICAL** |  | 2026-01-24 | 2026-06-10 |  |  |  |  |  |  |  |
| DAM3-E-PS-M-0330 |  | GRP tank | 2d | 2026-01-24 A | 2026-01-28 A | DAM3-E-PS-M-0320 | 100% | 2026-04-29 | 2026-04-30 | Purchaser [16 h] | 03 | 04 |
| DAM3-E-PS-M-0250 |  | Inline exhaust fans | 2d | 2026-02-02 A | 2026-02-02 A | DAM3-E-PS-M-0240 | 100% | 2026-04-11 | 2026-04-12 | Purchaser [16 h] | 03 | 04 |
| DAM3-E-PS-M-0260 |  | Wall propeller type exhaust fans | 2d | 2026-02-02 A | 2026-02-02 A | DAM3-E-PS-M-0250 | 100% | 2026-04-20 | 2026-04-21 | Purchaser [16 h] | 03 | 04 |
| DAM3-E-PS-M-0280 |  | Fire fighting valves | 2d | 2026-02-02 A | 2026-02-02 A | DAM3-E-PS-M-0270 | 100% | 2026-05-24 | 2026-05-25 | Purchaser [16 h] | 03 | 04 |
| DAM3-E-PS-M-0340 |  | Water supply valves | 2d | 2026-02-02 A | 2026-02-02 A | DAM3-E-PS-M-0330 | 100% | 2026-05-30 | 2026-05-31 | Purchaser [16 h] | 03 | 04 |
| DAM3-E-PS-M-0030 |  | PPR pipes | 2d | 2026-02-03 A | 2026-02-03 A | DAM3-E-PS-M-0010 | 100% | 2026-02-19 | 2026-02-23 | Purchaser [32 h] | 03 | 04 |
| DAM3-E-PS-M-0270 |  | Fire pumps | 2d | 2026-02-03 A | 2026-02-03 A | DAM3-E-PS-M-0260 | 100% | 2026-04-13 | 2026-04-14 | Purchaser [16 h] | 03 | 04 |
| DAM3-E-PS-M-0320 |  | Booster pump | 2d | 2026-02-03 A | 2026-02-03 A | DAM3-E-PS-M-0280 | 100% | 2026-04-18 | 2026-04-19 | Purchaser [16 h] | 03 | 04 |
| DAM3-E-PS-M-0070 |  | U/G HDPE pipes | 2d | 2026-02-04 A | 2026-02-04 A | DAM3-E-PS-M-0060 | 100% | 2026-03-01 | 2026-03-02 | Purchaser [32 h] | 03 | 04 |
| DAM3-E-PS-M-0090 |  | Fire hose cabinet | 2d | 2026-02-04 A | 2026-02-04 A | DAM3-E-PS-M-0070 | 100% | 2026-03-03 | 2026-03-04 | Purchaser [32 h] | 03 | 04 |
| DAM3-E-PS-M-0160 |  | UPVC pipes | 2d | 2026-02-04 A | 2026-02-04 A | DAM3-E-PS-M-0150 | 100% | 2026-03-01 | 2026-03-02 | Purchaser [32 h] | 03 | 04 |
| DAM3-E-PS-M-0200 |  | Electric water heater | 2d | 2026-02-05 A | 2026-02-05 A | DAM3-E-PS-M-0190 | 100% | 2026-03-30 | 2026-03-31 | Purchaser [16 h] | 03 | 04 |
| DAM3-E-PS-M-0210 |  | Western water closet | 2d | 2026-02-05 A | 2026-02-05 A | DAM3-E-PS-M-0200 | 100% | 2026-04-01 | 2026-04-02 | Purchaser [16 h] | 03 | 04 |
| DAM3-E-PS-M-0240 |  | Lavatory / wash basin | 2d | 2026-02-05 A | 2026-02-05 A | DAM3-E-PS-M-0230 | 100% | 2026-04-08 | 2026-04-09 | Purchaser [16 h] | 03 | 04 |
| DAM3-E-PS-M-0190 |  | Gully trap | 2d | 2026-02-07 A | 2026-02-07 A | DAM3-E-PS-M-0180 | 100% | 2026-03-28 | 2026-03-29 | Purchaser [16 h] | 03 | 04 |
| DAM3-E-PS-M-0230 |  | Toilet Fittings | 2d | 2026-02-07 A | 2026-02-07 A | DAM3-E-PS-M-0220 | 100% | 2026-04-06 | 2026-04-07 | Purchaser [16 h] | 03 | 04 |
| DAM3-E-PS-M-0010 |  | Seamless black steel or ERW pipes | 2d | 2026-02-08 A | 2026-02-08 A | DAM3-E-PS-A-0020 | 100% | 2026-02-17 | 2026-02-19 | Purchaser [32 h] | 03 | 04 |
| DAM3-E-PS-M-0100 |  | Automatic air release valve | 2d | 2026-02-08 A | 2026-02-08 A | DAM3-E-PS-M-0090 | 100% | 2026-02-23 | 2026-02-25 | Purchaser [32 h] | 03 | 04 |
| DAM3-E-PS-M-0110 |  | OS & Y gate valve | 2d | 2026-02-08 A | 2026-02-08 A | DAM3-E-PS-M-0100 | 100% | 2026-03-08 | 2026-03-09 | Purchaser [32 h] | 03 | 04 |
| DAM3-E-PS-M-0120 |  | Fire alarm check valve | 2d | 2026-02-08 A | 2026-02-08 A | DAM3-E-PS-M-0110 | 100% | 2026-03-10 | 2026-03-11 | Purchaser [32 h] | 03 | 04 |
| DAM3-E-PS-M-0040 |  | HVAC duct | 2d | 2026-02-09 A | 2026-02-09 A | DAM3-E-PS-M-0030 | 100% | 2026-03-01 | 2026-03-02 | Purchaser [32 h] | 03 | 04 |
| DAM3-E-PS-M-0050 |  | Flexible duct | 2d | 2026-02-09 A | 2026-02-09 A | DAM3-E-PS-M-0040 | 100% | 2026-02-17 | 2026-02-19 | Purchaser [32 h] | 03 | 04 |
| DAM3-E-PS-M-0140 |  | Ball valve | 2d | 2026-02-11 A | 2026-02-12 A | DAM3-E-PS-M-0120 | 100% | 2026-03-12 | 2026-03-14 | Purchaser [32 h] | 03 | 04 |
| DAM3-E-PS-M-0350 |  | Water tap | 2d | 2026-02-11 A | 2026-02-11 A | DAM3-E-PS-M-0340 | 100% | 2026-04-22 | 2026-04-23 | Purchaser [16 h] | 03 | 04 |
| DAM3-E-PS-M-0080 |  | Warning tapes | 2d | 2026-02-14 A | 2026-02-14 A | DAM3-E-PS-M-0060 | 100% | 2026-03-08 | 2026-03-09 | Purchaser [32 h] | 03 | 04 |
| DAM3-E-PS-M-0170 |  | Roof vent caps | 2d | 2026-02-16 A | 2026-02-16 A | DAM3-E-PS-M-0160 | 100% | 2026-03-03 | 2026-03-04 | Purchaser [16 h] | 03 | 04 |
| DAM3-E-PS-M-0180 |  | Floor drain | 2d | 2026-02-16 A | 2026-02-16 A | DAM3-E-PS-M-0170 | 100% | 2026-03-05 | 2026-03-07 | Purchaser [16 h] | 03 | 04 |
| DAM3-E-PS-M-0220 |  | Bib tap | 2d | 2026-04-04 A | 2026-04-05 A | DAM3-E-PS-M-0210 | 100% |  |  | Purchaser [16 h] | 03 | 04 |
| DAM3-E-PS-M-0060 |  | Exhaust diffuser | 2d | 2026-05-27 A | 2026-05-27 A | DAM3-E-PS-M-0050 | 100% | 2026-06-16 | 2026-06-17 | Purchaser [32 h] | 03 | 04 |
| DAM3-E-PS-M-0150 |  | Capped connection | 2d | 2026-06-10 A | 2026-06-10 A | DAM3-E-PS-M-0140 | 100% | 2026-06-18 | 2026-06-20 | Purchaser [32 h] | 03 | 04 |

| ID | WBS | Activity | Duration | Start | Finish | Predecessors | Complete | Planned start | Planned finish | Resources | Phasing Code Category | Discipline |
| --- | --- | --- | --- | --- | --- | --- | --- | --- | --- | --- | --- | --- |
|  | 3 | **ELECTRICAL** |  | 2026-02-07 | 2026-04-20 |  |  |  |  |  |  |  |
| DAM3-E-PS-E-0010 |  | PVC conduits | 2d | 2026-02-07 A | 2026-02-07 A | DAM3-E-PS-M-0010 | 100% | 2026-02-19 | 2026-02-23 | Purchaser [32 h] | 03 | 05 |
| DAM3-E-PS-E-0180 |  | Fire alarm system | 2d | 2026-02-09 A | 2026-02-09 A | DAM3-E-PS-E-0170 | 100% | 2026-03-30 | 2026-03-31 | Purchaser [16 h] | 03 | 05 |
| DAM3-E-PS-E-0240 |  | Access control system | 2d | 2026-02-09 A | 2026-02-09 A | DAM3-E-PS-E-0230 | 100% | 2026-04-13 | 2026-04-14 |  | 03 | 05 |
| DAM3-E-PS-E-0170 |  | Wall mounted, duplex, telephone and data outlet | 2d | 2026-02-11 A | 2026-02-11 A | DAM3-E-PS-E-0160 | 100% | 2026-04-08 | 2026-04-09 | Purchaser [16 h] | 03 | 05 |
| DAM3-E-PS-E-0230 |  | CCTV System | 2d | 2026-02-11 A | 2026-02-11 A | DAM3-E-PS-E-0220 | 100% | 2026-04-20 | 2026-04-21 |  | 03 | 05 |
| DAM3-E-PS-E-0250 |  | Solar system | 2d | 2026-02-24 A | 2026-03-01 A | DAM3-E-PS-E-0240, DAM3-E-MS-M-0190, DAM3-E-MS-M-0180, DAM3-E-MS-M-0170, DAM3-E-MS-M-0160, DAM3-E-MS-M-0200 | 100% | 2026-04-18 | 2026-04-19 |  | 03 | 05 |
| DAM3-E-PS-E-0120 |  | Suspended High Bay LED lights | 2d | 2026-03-01 A | 2026-03-01 A | DAM3-E-PS-E-0110 | 100% | 2026-04-05 | 2026-04-06 | Purchaser [32 h] | 03 | 05 |
| DAM3-E-PS-E-0130 |  | Flood lights | 2d | 2026-03-01 A | 2026-03-01 A | DAM3-E-PS-E-0120 | 100% | 2026-04-07 | 2026-04-08 | Purchaser [16 h] | 03 | 05 |
| DAM3-E-PS-E-0140 |  | Recessed mounted LED downlight | 2d | 2026-03-01 A | 2026-03-01 A | DAM3-E-PS-E-0130 | 100% | 2026-04-09 | 2026-04-11 | Purchaser [16 h] | 03 | 05 |
| DAM3-E-PS-E-0150 |  | LED Emergency Lights wall mounted | 2d | 2026-03-01 A | 2026-03-01 A | DAM3-E-PS-E-0140 | 100% | 2026-04-12 | 2026-04-13 | Purchaser [16 h] | 03 | 05 |
| DAM3-E-PS-E-0160 |  | LED Emergency Exit Light | 2d | 2026-03-01 A | 2026-03-01 A | DAM3-E-PS-E-0150 | 100% | 2026-04-14 | 2026-04-15 | Purchaser [16 h] | 03 | 05 |
| DAM3-E-PS-E-0200 |  | Street Lighting poles | 1d | 2026-03-01 A | 2026-03-01 A | DAM3-E-PS-E-0180 | 100% | 2026-06-01 | 2026-06-01 | Purchaser [16 h] | 03 | 05 |
| DAM3-E-PS-E-0220 |  | Surface mounted lights | 2d | 2026-03-01 A | 2026-03-01 A | DAM3-E-PS-E-0210 | 100% | 2026-04-21 | 2026-04-22 | Purchaser [16 h] | 03 | 05 |
| DAM3-E-PS-E-0030 |  | Cable Tray | 2d | 2026-03-03 A | 2026-03-03 A | DAM3-E-PS-E-0020 | 100% | 2026-03-11 | 2026-03-12 | Purchaser [32 h] | 03 | 05 |
| DAM3-E-PS-E-0050 |  | Wiring devices | 2d | 2026-03-03 A | 2026-03-03 A | DAM3-E-PS-E-0040 | 100% | 2026-03-16 | 2026-03-21 | Purchaser [32 h] | 03 | 05 |
| DAM3-E-PS-E-0020 |  | Wires | 2d | 2026-03-14 A | 2026-03-14 A | DAM3-E-PS-E-0010 | 100% | 2026-03-21 | 2026-03-22 | Purchaser [32 h] | 03 | 05 |
| DAM3-E-PS-E-0040 |  | Grounding system | 2d | 2026-03-14 A | 2026-03-14 A | DAM3-E-PS-E-0030 | 100% | 2026-03-23 | 2026-03-24 | Purchaser [32 h] | 03 | 05 |
| DAM3-E-PS-E-0070 |  | Low Voltage cables | 2d | 2026-03-14 A | 2026-03-14 A | DAM3-E-PS-E-0060 | 100% | 2026-03-28 | 2026-03-29 | Purchaser [32 h] | 03 | 05 |
| DAM3-E-PS-E-0110 |  | Disconnect switches | 2d | 2026-03-25 A | 2026-03-25 A | DAM3-E-PS-E-0100 | 100% | 2026-04-09 | 2026-04-11 | Purchaser [32 h] | 03 | 05 |
| DAM3-E-PS-E-0080 |  | Main distribution board (MDB) | 2d | 2026-04-19 A | 2026-04-19 A | DAM3-E-PS-E-0070 | 100% | 2026-05-21 | 2026-05-23 | Purchaser [32 h] | 03 | 05 |
| DAM3-E-PS-E-0090 |  | Lighting panel board | 2d | 2026-04-19 A | 2026-04-19 A | DAM3-E-PS-E-0080 | 100% | 2026-05-24 | 2026-05-25 | Purchaser [32 h] | 03 | 05 |
| DAM3-E-PS-E-0100 |  | PP-AC panel | 2d | 2026-04-19 A | 2026-04-19 A | DAM3-E-PS-E-0090 | 100% | 2026-05-30 | 2026-05-31 | Purchaser [32 h] | 03 | 05 |
| DAM3-E-PS-E-0210 |  | Distribution board for pump room | 1d | 2026-04-19 A | 2026-04-19 A | DAM3-E-PS-E-0200 | 100% | 2026-06-02 | 2026-06-02 | Purchaser [16 h] | 03 | 05 |
| DAM3-E-PS-E-0060 |  | HDPE ducts | 2d | 2026-04-20 A | 2026-04-20 A | DAM3-E-PS-E-0050 | 100% | 2026-05-19 | 2026-05-20 | Purchaser [32 h] | 03 | 05 |
| DAM3-E-PS-E-0260 |  | Main program system & controller | 2d | 2026-04-20 A | 2026-04-20 A | DAM3-E-PS-E-0250 | 100% | 2026-06-03 | 2026-06-04 |  | 03 | 05 |
| DAM3-E-PS-E-0270 |  | PLC controller | 2d | 2026-04-20 A | 2026-04-20 A | DAM3-E-PS-E-0260 | 100% | 2026-06-06 | 2026-06-07 |  | 03 | 05 |

| ID | WBS | Activity | Duration | Start | Finish | Predecessors | Complete | Planned start | Planned finish | Resources | Phasing Code Category | Discipline |
| --- | --- | --- | --- | --- | --- | --- | --- | --- | --- | --- | --- | --- |
|  | 4 | **EXTERNAL** |  | 2026-06-10 | 2026-06-10 |  |  |  |  |  |  |  |
| DAM3-E-PS-EX-0010 |  | Asphalt works | 2d | 2026-06-10 A | 2026-06-10 A | DAM3-E-PS-E-0220 | 100% | 2026-06-16 | 2026-06-17 | Purchaser [16 h] | 03 | 07 |
| DAM3-E-PS-EX-0020 |  | Concrete parking bumper | 2d | 2026-06-10 A | 2026-06-10 A | DAM3-E-PS-EX-0010 | 100% | 2026-06-18 | 2026-06-20 | Purchaser [16 h] | 03 | 07 |
| DAM3-E-PS-EX-0030 |  | Road markings | 2d | 2026-06-10 A | 2026-06-10 A | DAM3-E-PS-EX-0020 | 100% | 2026-06-21 | 2026-06-22 | Purchaser [16 h] | 03 | 07 |
| DAM3-E-PS-EX-0040 |  | Road signs | 2d | 2026-06-10 A | 2026-06-10 A | DAM3-E-PS-EX-0030 | 100% | 2026-06-23 | 2026-06-24 | Purchaser [16 h] | 03 | 07 |
| DAM3-E-PS-EX-0060 |  | Interlock tiles | 2d | 2026-06-10 A | 2026-06-10 A | DAM3-E-PS-EX-0040 | 100% | 2026-06-25 | 2026-06-27 | Purchaser [16 h] | 03 | 07 |
| DAM3-E-PS-EX-0070 |  | Curbstones | 2d | 2026-06-10 A | 2026-06-10 A | DAM3-E-PS-EX-0060 | 100% | 2026-06-28 | 2026-06-29 | Purchaser [16 h] | 03 | 07 |
| DAM3-E-PS-EX-0080 |  | Gravel bedding | 2d | 2026-06-10 A | 2026-06-10 A | DAM3-E-PS-EX-0070 | 100% | 2026-06-30 | 2026-07-01 | Purchaser [16 h] | 03 | 07 |
|  | 5 | **ENVIRONMETAL** |  | 2026-02-03 | 2026-03-03 |  |  |  |  |  |  |  |
| DAM3-E-PS-EN-0080 |  | UPVC pipes | 2d | 2026-02-03 A | 2026-03-03 A | DAM3-E-PS-EN-0070 | 100% | 2026-05-19 | 2026-05-20 | Purchaser [32 h] | 03 | 07 |
| DAM3-E-PS-EN-0010 |  | HDPE pipes for fire system | 2d | 2026-02-05 A | 2026-02-05 A | DAM3-E-PS-M-0010 | 100% | 2026-02-19 | 2026-02-23 | Purchaser [32 h] | 03 | 07 |
| DAM3-E-PS-EN-0030 |  | HDPE pipes for water supply system | 2d | 2026-02-05 A | 2026-02-05 A | DAM3-E-PS-EN-0020 | 100% | 2026-02-25 | 2026-02-28 | Purchaser [32 h] | 03 | 07 |
| DAM3-E-PS-EN-0020 |  | Directly buried gate valve for fire system | 2d | 2026-02-14 A | 2026-02-14 A | DAM3-E-PS-EN-0010 | 100% | 2026-02-17 | 2026-02-19 | Purchaser [32 h] | 03 | 07 |
| DAM3-E-PS-EN-0040 |  | Directly buried gate valve for water system | 2d | 2026-02-14 A | 2026-02-14 A | DAM3-E-PS-EN-0030 | 100% | 2026-02-19 | 2026-02-23 | Purchaser [32 h] | 03 | 07 |
| DAM3-E-PS-EN-0050 |  | Air valve | 2d | 2026-02-16 A | 2026-02-16 A | DAM3-E-PS-EN-0040 | 100% | 2026-02-23 | 2026-02-25 | Purchaser [32 h] | 03 | 07 |
| DAM3-E-PS-EN-0060 |  | Washout valve | 2d | 2026-02-16 A | 2026-02-16 A | DAM3-E-PS-EN-0050 | 100% | 2026-02-25 | 2026-02-28 | Purchaser [32 h] | 03 | 07 |
| DAM3-E-PS-EN-0070 |  | Gate valve | 2d | 2026-02-16 A | 2026-02-16 A | DAM3-E-PS-EN-0060 | 100% | 2026-03-01 | 2026-03-02 | Purchaser [32 h] | 03 | 07 |
|  | 2 | **REVIEW AND APPROVAL** |  | 2026-01-15 | 2026-06-11 |  |  |  |  |  |  |  |
|  | 6 | **STRUCTURAL** |  | 2026-01-15 | 2026-01-21 |  |  |  |  |  |  |  |
| DAM3-E-PA-C-0010 |  | Anti termite | 2d | 2026-01-15 A | 2026-01-20 A | DAM3-E-PS-C-0010 | 100% | 2026-02-17 | 2026-02-19 |  | 03 | 01 |
| DAM3-E-PA-C-0020 |  | Concrete mix | 2d | 2026-01-15 A | 2026-01-20 A | DAM3-E-PS-C-0020 | 100% | 2026-02-23 | 2026-02-25 |  | 03 | 01 |
| DAM3-E-PA-C-0040 |  | Bitumen paint | 2d | 2026-01-15 A | 2026-01-20 A | DAM3-E-PS-C-0040 | 100% | 2026-02-19 | 2026-02-23 |  | 03 | 01 |
| DAM3-E-PA-C-0050 |  | Rebar | 2d | 2026-01-15 A | 2026-01-20 A | DAM3-E-PS-C-0050 | 100% | 2026-02-19 | 2026-02-23 |  | 03 | 01 |
| DAM3-E-PA-C-0030 |  | Polyethylene sheet | 5d | 2026-01-19 A | 2026-01-21 A | DAM3-E-PS-C-0030 | 100% | 2026-01-15 | 2026-01-20 |  | 03 | 01 |

| ID | WBS | Activity | Duration | Start | Finish | Predecessors | Complete | Planned start | Planned finish | Resources | Phasing Code Category | Discipline |
| --- | --- | --- | --- | --- | --- | --- | --- | --- | --- | --- | --- | --- |
|  | 1 | **ARCHITECTURAL** |  | 2026-02-08 | 2026-06-11 |  |  |  |  |  |  |  |
| DAM3-E-PA-A-0040 |  | Concrete masonry unit (CMU) | 2d | 2026-02-08 A | 2026-02-09 A | DAM3-E-PS-A-0040 | 100% | 2026-02-25 | 2026-02-28 |  | 03 | 03 |
| DAM3-E-PA-A-0130 |  | Windows | 2d | 2026-02-08 A | 2026-02-09 A | DAM3-E-PS-A-0130 | 100% | 2026-05-30 | 2026-05-31 |  | 03 | 03 |
| DAM3-E-PA-A-0200 |  | Aluminum Composite Panel | 2d | 2026-02-09 A | 2026-02-10 A | DAM3-E-PS-A-0200 | 100% | 2026-06-06 | 2026-06-07 | Purchaser [32 h] | 03 | 03 |
| DAM3-E-PA-A-0120 |  | Doors | 2d | 2026-02-16 A | 2026-02-17 A | DAM3-E-PS-A-0120 | 100% | 2026-04-07 | 2026-04-08 |  | 03 | 03 |
| DAM3-E-PA-A-0020 |  | PES -Steel Structure | 2d | 2026-02-17 A | 2026-02-19 A | DAM3-E-PS-A-0020 | 100% |  |  | Purchaser [32 h] | 03 | 03 |
| DAM3-E-PA-A-0050 |  | Steel ladder | 2d | 2026-02-17 A | 2026-02-19 A | DAM3-E-PS-A-0050 | 100% |  |  |  | 03 | 03 |
| DAM3-E-PA-A-0190 |  | Gypsum board | 2d | 2026-02-24 A | 2026-04-12 A | DAM3-E-PS-A-0190 | 100% | 2026-04-02 | 2026-04-04 |  | 03 | 03 |
| DAM3-E-PA-A-0140 |  | Ceramic tiles | 2d | 2026-03-25 A | 2026-03-26 A | DAM3-E-PS-A-0140 | 100% | 2026-04-12 | 2026-04-13 |  | 03 | 03 |
| DAM3-E-PA-A-0180 |  | Internl paint | 2d | 2026-03-25 A | 2026-03-26 A | DAM3-E-PS-A-0180 | 100% | 2026-04-19 | 2026-04-20 |  | 03 | 03 |
| DAM3-E-PA-A-0170 |  | Epoxy paint | 2d | 2026-04-20 A | 2026-04-21 A | DAM3-E-PS-A-0170 | 100% | 2026-06-03 | 2026-06-04 |  | 03 | 03 |
| DAM3-E-PA-A-0150 |  | Granite strip | 2d | 2026-05-03 A | 2026-05-04 A | DAM3-E-PS-A-0150 | 100% | 2026-06-01 | 2026-06-02 |  | 03 | 03 |
| DAM3-E-PA-A-0060 |  | Steel gratings | 2d | 2026-05-19 A | 2026-05-20 A | DAM3-E-PS-A-0060 | 100% | 2026-06-18 | 2026-06-20 |  | 03 | 03 |
| DAM3-E-PA-A-0230 |  | Steel fence and gates | 2d | 2026-05-20 A | 2026-05-21 A | DAM3-E-PS-A-0230 | 100% | 2026-06-23 | 2026-06-24 | Purchaser [16 h] | 03 | 03 |
| DAM3-E-PA-A-0070 |  | Steel rails | 2d | 2026-06-10 A | 2026-06-11 A | DAM3-E-PS-A-0070 | 100% | 2026-06-21 | 2026-06-22 |  | 03 | 03 |
| DAM3-E-PA-A-0240 |  | Identification sign; ID01 & ID02 | 2d | 2026-06-10 A | 2026-06-11 A | DAM3-E-PS-A-0240 | 100% | 2026-06-25 | 2026-06-27 | Purchaser [16 h] | 03 | 03 |
|  | 2 | **MECHANICAL** |  | 2026-01-24 | 2026-06-11 |  |  |  |  |  |  |  |
| DAM3-E-PA-M-0340 |  | GRP tank | 2d | 2026-01-24 A | 2026-02-16 A | DAM3-E-PS-M-0330 | 100% | 2026-05-02 | 2026-05-03 |  | 03 | 04 |
| DAM3-E-PA-M-0250 |  | Inline exhaust fans | 2d | 2026-02-02 A | 2026-02-17 A | DAM3-E-PS-M-0250 | 100% | 2026-03-08 | 2026-03-09 |  | 03 | 04 |
| DAM3-E-PA-M-0260 |  | Wall propeller type exhaust fans | 2d | 2026-02-02 A | 2026-02-17 A | DAM3-E-PS-M-0260 | 100% | 2026-04-13 | 2026-04-14 |  | 03 | 04 |
| DAM3-E-PA-M-0280 |  | Fire fighting valves | 2d | 2026-02-02 A | 2026-02-03 A | DAM3-E-PS-M-0280 | 100% | 2026-05-30 | 2026-05-31 |  | 03 | 04 |
| DAM3-E-PA-M-0350 |  | Water supply valves | 2d | 2026-02-02 A | 2026-02-03 A | DAM3-E-PS-M-0340 | 100% | 2026-06-01 | 2026-06-02 |  | 03 | 04 |
| DAM3-E-PA-M-0030 |  | PPR pipes | 2d | 2026-02-03 A | 2026-02-04 A | DAM3-E-PS-M-0030 | 100% | 2026-02-23 | 2026-02-25 |  | 03 | 04 |
| DAM3-E-PA-M-0270 |  | Fire pumps | 2d | 2026-02-03 A | 2026-02-04 A | DAM3-E-PS-M-0270 | 100% | 2026-04-15 | 2026-04-16 |  | 03 | 04 |
| DAM3-E-PA-M-0330 |  | Booster pump | 2d | 2026-02-03 A | 2026-02-04 A | DAM3-E-PS-M-0320 | 100% | 2026-04-20 | 2026-04-21 |  | 03 | 04 |
| DAM3-E-PA-M-0070 |  | U/G HDPE pipes | 2d | 2026-02-04 A | 2026-02-05 A | DAM3-E-PS-M-0070 | 100% | 2026-03-03 | 2026-03-04 |  | 03 | 04 |
| DAM3-E-PA-M-0090 |  | Fire hose cabinet | 2d | 2026-02-04 A | 2026-02-05 A | DAM3-E-PS-M-0090 | 100% | 2026-03-05 | 2026-03-07 |  | 03 | 04 |
| DAM3-E-PA-M-0160 |  | UPVC pipes | 2d | 2026-02-04 A | 2026-02-05 A | DAM3-E-PS-M-0160 | 100% | 2026-03-03 | 2026-03-04 |  | 03 | 04 |
| DAM3-E-PA-M-0200 |  | Electric water heater | 2d | 2026-02-05 A | 2026-02-07 A | DAM3-E-PS-M-0200 | 100% | 2026-04-01 | 2026-04-02 |  | 03 | 04 |
| DAM3-E-PA-M-0210 |  | Western water closet | 2d | 2026-02-05 A | 2026-02-07 A | DAM3-E-PS-M-0210 | 100% | 2026-04-04 | 2026-04-05 |  | 03 | 04 |
| DAM3-E-PA-M-0240 |  | Lavatory / wash basin | 2d | 2026-02-05 A | 2026-02-07 A | DAM3-E-PS-M-0240 | 100% | 2026-04-11 | 2026-04-12 |  | 03 | 04 |
| DAM3-E-PA-M-0190 |  | Gully trap | 2d | 2026-02-07 A | 2026-02-08 A | DAM3-E-PS-M-0190 | 100% | 2026-03-30 | 2026-03-31 |  | 03 | 04 |
| DAM3-E-PA-M-0230 |  | Toilet Fittings | 2d | 2026-02-07 A | 2026-02-08 A | DAM3-E-PS-M-0230 | 100% | 2026-04-08 | 2026-04-09 |  | 03 | 04 |
| DAM3-E-PA-M-0010 |  | Seamless black steel or ERW pipes | 2d | 2026-02-08 A | 2026-02-09 A | DAM3-E-PS-M-0010 | 100% | 2026-02-19 | 2026-02-23 |  | 03 | 04 |
| DAM3-E-PA-M-0100 |  | Automatic air release valve | 2d | 2026-02-08 A | 2026-02-09 A | DAM3-E-PS-M-0100 | 100% | 2026-03-08 | 2026-03-09 |  | 03 | 04 |
| DAM3-E-PA-M-0110 |  | OS & Y gate valve | 2d | 2026-02-08 A | 2026-02-09 A | DAM3-E-PS-M-0110 | 100% | 2026-03-10 | 2026-03-11 |  | 03 | 04 |
| DAM3-E-PA-M-0120 |  | Fire alarm check valve | 2d | 2026-02-08 A | 2026-02-09 A | DAM3-E-PS-M-0120 | 100% | 2026-03-12 | 2026-03-14 |  | 03 | 04 |
| DAM3-E-PA-M-0040 |  | HVAC duct | 2d | 2026-02-09 A | 2026-02-10 A | DAM3-E-PS-M-0040 | 100% | 2026-03-03 | 2026-03-04 |  | 03 | 04 |
| DAM3-E-PA-M-0050 |  | Flexible duct | 2d | 2026-02-09 A | 2026-02-10 A | DAM3-E-PS-M-0050 | 100% | 2026-03-05 | 2026-03-07 |  | 03 | 04 |
| DAM3-E-PA-M-0140 |  | Ball valve | 2d | 2026-02-11 A | 2026-02-11 A | DAM3-E-PS-M-0140 | 100% | 2026-03-15 | 2026-03-16 |  | 03 | 04 |
| DAM3-E-PA-M-0320 |  | Water tap | 2d | 2026-02-11 A | 2026-02-12 A | DAM3-E-PS-M-0350 | 100% | 2026-03-12 | 2026-03-14 | Purchaser [16 h] | 03 | 04 |
| DAM3-E-PA-M-0080 |  | Warning tapes | 2d | 2026-02-14 A | 2026-02-15 A | DAM3-E-PS-M-0080 | 100% | 2026-03-10 | 2026-03-11 |  | 03 | 04 |
| DAM3-E-PA-M-0170 |  | Roof vent caps | 2d | 2026-02-16 A | 2026-02-17 A | DAM3-E-PS-M-0170 | 100% | 2026-03-05 | 2026-03-07 |  | 03 | 04 |
| DAM3-E-PA-M-0180 |  | Floor drain | 2d | 2026-02-16 A | 2026-02-17 A | DAM3-E-PS-M-0180 | 100% | 2026-03-08 | 2026-03-09 |  | 03 | 04 |
| DAM3-E-PA-M-0220 |  | Bib tap | 2d | 2026-04-06 A | 2026-04-07 A | DAM3-E-PS-M-0220 | 100% |  |  |  | 03 | 04 |
| DAM3-E-PA-M-0060 |  | Exhaust diffuser | 2d | 2026-05-27 A | 2026-05-28 A | DAM3-E-PS-M-0060 | 100% | 2026-06-18 | 2026-06-20 |  | 03 | 04 |
| DAM3-E-PA-M-0150 |  | Capped connection | 2d | 2026-06-10 A | 2026-06-11 A | DAM3-E-PS-M-0150 | 100% | 2026-06-21 | 2026-06-22 |  | 03 | 04 |

| ID | WBS | Activity | Duration | Start | Finish | Predecessors | Complete | Planned start | Planned finish | Resources | Phasing Code Category | Discipline |
| --- | --- | --- | --- | --- | --- | --- | --- | --- | --- | --- | --- | --- |
|  | 3 | **ELECTRICAL** |  | 2026-02-07 | 2026-04-21 |  |  |  |  |  |  |  |
| DAM3-E-PA-E-0010 |  | PVC conduits | 2d | 2026-02-07 A | 2026-02-08 A | DAM3-E-PS-E-0010 | 100% | 2026-02-23 | 2026-02-25 |  | 03 | 05 |
| DAM3-E-PA-E-0180 |  | Fire alarm system | 2d | 2026-02-09 A | 2026-02-10 A | DAM3-E-PS-E-0180 | 100% | 2026-04-01 | 2026-04-02 |  | 03 | 05 |
| DAM3-E-PA-E-0240 |  | Access control system | 2d | 2026-02-09 A | 2026-02-10 A | DAM3-E-PS-E-0240 | 100% | 2026-04-15 | 2026-04-16 |  | 03 | 05 |
| DAM3-E-PA-E-0170 |  | Wall mounted, duplex, telephone and data outlet | 2d | 2026-02-11 A | 2026-02-14 A | DAM3-E-PS-E-0170 | 100% | 2026-04-11 | 2026-04-12 |  | 03 | 05 |
| DAM3-E-PA-E-0230 |  | CCTV System | 2d | 2026-02-11 A | 2026-02-14 A | DAM3-E-PS-E-0230 | 100% | 2026-04-22 | 2026-04-23 |  | 03 | 05 |
| DAM3-E-PA-E-0250 |  | Solar system | 2d | 2026-02-24 A | 2026-03-02 A | DAM3-E-PS-E-0250 | 100% | 2026-04-20 | 2026-04-21 |  | 03 | 05 |
| DAM3-E-PA-E-0120 |  | Suspended High Bay LED lights | 2d | 2026-03-01 A | 2026-03-02 A | DAM3-E-PS-E-0120 | 100% | 2026-04-07 | 2026-04-08 |  | 03 | 05 |
| DAM3-E-PA-E-0130 |  | Flood lights | 2d | 2026-03-01 A | 2026-03-02 A | DAM3-E-PS-E-0130 | 100% | 2026-04-09 | 2026-04-11 |  | 03 | 05 |
| DAM3-E-PA-E-0140 |  | Recessed mounted LED downlight | 2d | 2026-03-01 A | 2026-03-02 A | DAM3-E-PS-E-0140 | 100% | 2026-04-12 | 2026-04-13 |  | 03 | 05 |
| DAM3-E-PA-E-0150 |  | LED Emergency Lights wall mounted | 2d | 2026-03-01 A | 2026-03-02 A | DAM3-E-PS-E-0150 | 100% | 2026-04-14 | 2026-04-15 |  | 03 | 05 |
| DAM3-E-PA-E-0160 |  | LED Emergency Exit Light | 2d | 2026-03-01 A | 2026-03-02 A | DAM3-E-PS-E-0160 | 100% | 2026-04-16 | 2026-04-18 |  | 03 | 05 |
| DAM3-E-PA-E-0200 |  | Street Lighting poles | 2d | 2026-03-01 A | 2026-03-02 A | DAM3-E-PS-E-0200 | 100% | 2026-06-02 | 2026-06-03 |  | 03 | 05 |
| DAM3-E-PA-E-0220 |  | Surface mounted lights | 2d | 2026-03-01 A | 2026-03-02 A | DAM3-E-PS-E-0220 | 100% | 2026-04-23 | 2026-04-25 |  | 03 | 05 |
| DAM3-E-PA-E-0030 |  | Cable Tray | 2d | 2026-03-03 A | 2026-03-04 A | DAM3-E-PS-E-0030 | 100% | 2026-03-14 | 2026-03-15 | Purchaser [32 h] | 03 | 05 |
| DAM3-E-PA-E-0050 |  | Wiring devices | 2d | 2026-03-03 A | 2026-03-04 A | DAM3-E-PS-E-0050 | 100% | 2026-03-22 | 2026-03-23 |  | 03 | 05 |
| DAM3-E-PA-E-0020 |  | Wires | 2d | 2026-03-14 A | 2026-03-15 A | DAM3-E-PS-E-0020 | 100% | 2026-03-23 | 2026-03-24 |  | 03 | 05 |
| DAM3-E-PA-E-0040 |  | Grounding system | 2d | 2026-03-14 A | 2026-03-15 A | DAM3-E-PS-E-0040 | 100% | 2026-03-25 | 2026-03-26 |  | 03 | 05 |
| DAM3-E-PA-E-0070 |  | Low Voltage cables | 2d | 2026-03-14 A | 2026-03-15 A | DAM3-E-PS-E-0070 | 100% | 2026-03-30 | 2026-03-31 |  | 03 | 05 |
| DAM3-E-PA-E-0110 |  | Disconnect switches | 2d | 2026-03-25 A | 2026-03-26 A | DAM3-E-PS-E-0110 | 100% | 2026-04-12 | 2026-04-13 |  | 03 | 05 |
| DAM3-E-PA-E-0080 |  | Main distribution board (MDB) | 2d | 2026-04-19 A | 2026-04-20 A | DAM3-E-PS-E-0080 | 100% | 2026-05-24 | 2026-05-25 |  | 03 | 05 |
| DAM3-E-PA-E-0090 |  | Lighting panel board | 2d | 2026-04-19 A | 2026-04-20 A | DAM3-E-PS-E-0090 | 100% | 2026-05-30 | 2026-05-31 | Purchaser [32 h] | 03 | 05 |
| DAM3-E-PA-E-0100 |  | PP-AC panel | 2d | 2026-04-19 A | 2026-04-20 A | DAM3-E-PS-E-0100 | 100% | 2026-06-01 | 2026-06-02 | Purchaser [32 h] | 03 | 05 |
| DAM3-E-PA-E-0210 |  | Distribution board for pump room | 2d | 2026-04-19 A | 2026-04-20 A | DAM3-E-PS-E-0210 | 100% | 2026-06-03 | 2026-06-04 |  | 03 | 05 |
| DAM3-E-PA-E-0060 |  | HDPE ducts | 2d | 2026-04-20 A | 2026-04-21 A | DAM3-E-PS-E-0060 | 100% | 2026-05-21 | 2026-05-23 |  | 03 | 05 |
| DAM3-E-PA-E-0260 |  | Main program system & controller | 2d | 2026-04-20 A | 2026-04-21 A | DAM3-E-PS-E-0260 | 100% | 2026-06-06 | 2026-06-07 |  | 03 | 05 |
| DAM3-E-PA-E-0270 |  | PLC controller | 2d | 2026-04-20 A | 2026-04-21 A | DAM3-E-PS-E-0270 | 100% | 2026-06-08 | 2026-06-09 |  | 03 | 05 |

| ID | WBS | Activity | Duration | Start | Finish | Predecessors | Complete | Planned start | Planned finish | Resources | Phasing Code Category | Discipline |
| --- | --- | --- | --- | --- | --- | --- | --- | --- | --- | --- | --- | --- |
|  | 4 | **EXTERNAL** |  | 2026-06-09 | 2026-06-10 |  |  |  |  |  |  |  |
| DAM3-E-PA-EX-0010 |  | Asphalt works | 2d | 2026-06-09 A | 2026-06-10 A | DAM3-E-PS-EX-0010 | 100% | 2026-06-18 | 2026-06-20 |  | 03 | 07 |
| DAM3-E-PA-EX-0020 |  | Concrete parking bumper | 2d | 2026-06-09 A | 2026-06-10 A | DAM3-E-PS-EX-0020 | 100% | 2026-06-21 | 2026-06-22 |  | 03 | 07 |
| DAM3-E-PA-EX-0030 |  | Road markings | 2d | 2026-06-09 A | 2026-06-10 A | DAM3-E-PS-EX-0030 | 100% | 2026-06-23 | 2026-06-24 |  | 03 | 07 |
| DAM3-E-PA-EX-0040 |  | Road signs | 2d | 2026-06-09 A | 2026-06-10 A | DAM3-E-PS-EX-0040 | 100% | 2026-06-25 | 2026-06-27 |  | 03 | 07 |
| DAM3-E-PA-EX-0060 |  | Interlock tiles | 2d | 2026-06-09 A | 2026-06-10 A | DAM3-E-PS-EX-0060 | 100% | 2026-06-28 | 2026-06-29 |  | 03 | 07 |
| DAM3-E-PA-EX-0070 |  | Curbstones | 2d | 2026-06-09 A | 2026-06-10 A | DAM3-E-PS-EX-0070 | 100% | 2026-06-30 | 2026-07-01 |  | 03 | 07 |
| DAM3-E-PA-EX-0080 |  | Gravel bedding | 2d | 2026-06-09 A | 2026-06-10 A | DAM3-E-PS-EX-0080 | 100% | 2026-07-02 | 2026-07-04 |  | 03 | 07 |
|  | 5 | **ENVIRONMETAL** |  | 2026-02-03 | 2026-02-17 |  |  |  |  |  |  |  |
| DAM3-E-PA-EN-0080 |  | UPVC pipes | 2d | 2026-02-03 A | 2026-02-04 A | DAM3-E-PS-EN-0080 | 100% | 2026-05-21 | 2026-05-23 |  | 03 | 07 |
| DAM3-E-PA-EN-0010 |  | HDPE pipes for fire system | 2d | 2026-02-05 A | 2026-02-07 A | DAM3-E-PS-EN-0010 | 100% | 2026-02-23 | 2026-02-25 |  | 03 | 07 |
| DAM3-E-PA-EN-0030 |  | HDPE pipes for water supply system | 2d | 2026-02-05 A | 2026-02-07 A | DAM3-E-PS-EN-0030 | 100% | 2026-03-01 | 2026-03-02 |  | 03 | 07 |
| DAM3-E-PA-EN-0020 |  | Directly buried gate valve for fire system | 2d | 2026-02-14 A | 2026-02-15 A | DAM3-E-PS-EN-0020 | 100% | 2026-02-25 | 2026-02-28 |  | 03 | 07 |
| DAM3-E-PA-EN-0040 |  | Directly buried gate valve for water system | 2d | 2026-02-14 A | 2026-02-15 A | DAM3-E-PS-EN-0040 | 100% | 2026-03-03 | 2026-03-04 |  | 03 | 07 |
| DAM3-E-PA-EN-0050 |  | Air valve | 2d | 2026-02-16 A | 2026-02-17 A | DAM3-E-PS-EN-0050 | 100% | 2026-02-25 | 2026-02-28 |  | 03 | 07 |
| DAM3-E-PA-EN-0060 |  | Washout valve | 2d | 2026-02-16 A | 2026-02-17 A | DAM3-E-PS-EN-0060 | 100% | 2026-03-01 | 2026-03-02 |  | 03 | 07 |
| DAM3-E-PA-EN-0070 |  | Gate valve | 2d | 2026-02-16 A | 2026-02-17 A | DAM3-E-PS-EN-0070 | 100% | 2026-03-03 | 2026-03-04 |  | 03 | 07 |
|  | 2 | **MATERIAL SUBMITTAL** |  | 2026-01-15 | 2026-06-14 |  |  |  |  |  |  |  |
|  | 1 | **PREPARATION AND SUBMITTAL** |  | 2026-01-15 | 2026-06-13 |  |  |  |  |  |  |  |
|  | 6 | **STRUCTURAL** |  | 2026-01-15 | 2026-03-14 |  |  |  |  |  |  |  |
| DAM3-E-MS-C-0020 |  | Concrete mix | 2d | 2026-01-15 A | 2026-01-15 A | DAM3-E-PA-C-0020 | 100% | 2026-02-25 | 2026-02-28 | Purchaser [32 h]; Construction Cost | 03 | 01 |
| DAM3-E-MS-C-0030 |  | Polyethylene sheet | 2d | 2026-01-22 A | 2026-01-22 A | DAM3-E-PA-C-0030 | 100% | 2026-03-01 | 2026-03-02 | Purchaser [32 h]; Construction Cost | 03 | 01 |
| DAM3-E-MS-C-0040 |  | Bitumen paint | 2d | 2026-01-22 A | 2026-01-22 A | DAM3-E-PA-C-0040 | 100% | 2026-03-03 | 2026-03-04 | Purchaser [32 h]; Construction Cost | 03 | 01 |
| DAM3-E-MS-C-0050 |  | Rebar | 2d | 2026-01-22 A | 2026-01-22 A | DAM3-E-PA-C-0050 | 100% | 2026-03-05 | 2026-03-07 | Purchaser [32 h]; Construction Cost | 03 | 01 |
| DAM3-E-MS-C-0010 |  | Anti termite | 2d | 2026-03-14 A | 2026-03-14 A | DAM3-E-PA-C-0010 | 100% | 2026-02-24 | 2026-02-26 | Purchaser [32 h]; Construction Cost | 03 | 01 |

| ID | WBS | Activity | Duration | Start | Finish | Predecessors | Complete | Planned start | Planned finish | Resources | Phasing Code Category | Discipline |
| --- | --- | --- | --- | --- | --- | --- | --- | --- | --- | --- | --- | --- |
|  | 1 | **ARCHITECTURAL** |  | 2026-02-07 | 2026-06-13 |  |  |  |  |  |  |  |
| DAM3-E-MS-A-0030 |  | Steel ladder | 2d | 2026-02-07 A | 2026-02-07 A | DAM3-E-PA-A-0050 | 100% | 2026-03-09 | 2026-03-10 | Purchaser [32 h]; Construction Cost | 03 | 03 |
| DAM3-E-MS-A-1700 |  | PES -Steel Structure | 2d | 2026-02-07 A | 2026-02-07 A | DAM3-E-PA-A-0020 | 100% | 2026-02-25 | 2026-02-28 | Purchaser [32 h]; Construction Cost | 03 | 03 |
| DAM3-E-MS-A-0100 |  | Doors | 2d | 2026-02-19 A | 2026-02-19 A | DAM3-E-PA-A-0120 | 100% | 2026-03-05 | 2026-03-08 | Purchaser [32 h]; Construction Cost | 03 | 03 |
| DAM3-E-MS-A-0110 |  | Windows | 2d | 2026-02-19 A | 2026-02-19 A | DAM3-E-PA-A-0130 | 100% | 2026-05-21 | 2026-05-23 | Purchaser [32 h]; Construction Cost | 03 | 03 |
| DAM3-E-MS-A-1720 |  | Aluminum Composite Panel | 2d | 2026-02-19 A | 2026-02-19 A | DAM3-E-PA-A-0200 | 100% | 2026-06-01 | 2026-06-02 | Purchaser [16 h]; Construction Cost | 03 | 03 |
| DAM3-E-MS-A-0160 |  | Internl paint | 2d | 2026-03-29 A | 2026-03-29 A | DAM3-E-PA-A-0180 | 100% | 2026-04-21 | 2026-04-22 | Purchaser [32 h]; Construction Cost | 03 | 03 |
| DAM3-E-MS-A-0120 |  | Ceramic tiles | 2d | 2026-03-30 A | 2026-03-30 A | DAM3-E-PA-A-0140 | 100% | 2026-04-14 | 2026-04-15 | Purchaser [32 h]; Construction Cost | 03 | 03 |
| DAM3-E-MS-A-0170 |  | Gypsum board | 2d | 2026-04-19 A | 2026-04-19 A | DAM3-E-PA-A-0190 | 100% | 2026-05-05 | 2026-05-06 | Purchaser [32 h]; Construction Cost | 03 | 03 |
| DAM3-E-MS-A-0020 |  | Concrete masonry unit (CMU) | 2d | 2026-04-26 A | 2026-04-26 A | DAM3-E-PA-A-0040 | 100% | 2026-04-28 | 2026-04-29 | Purchaser [32 h]; Construction Cost | 03 | 03 |
| DAM3-E-MS-A-0150 |  | Epoxy paint | 2d | 2026-04-29 A | 2026-04-29 A | DAM3-E-PA-A-0170 | 100% | 2026-05-30 | 2026-05-31 | Purchaser [32 h]; Construction Cost | 03 | 03 |
| DAM3-E-MS-A-0130 |  | Granite strip | 2d | 2026-05-09 A | 2026-05-09 A | DAM3-E-PA-A-0150 | 100% | 2026-05-24 | 2026-05-25 | Purchaser [32 h]; Construction Cost | 03 | 03 |
| DAM3-E-MS-A-0040 |  | Steel gratings | 2d | 2026-05-21 A | 2026-05-21 A | DAM3-E-PA-A-0060 | 100% | 2026-06-07 | 2026-06-08 | Purchaser [32 h]; Construction Cost | 03 | 03 |
| DAM3-E-MS-A-1750 |  | Steel fence and gates | 2d | 2026-05-23 A | 2026-05-23 A | DAM3-E-PA-A-0230 | 100% | 2026-06-11 | 2026-06-13 | Purchaser [16 h]; Construction Cost | 03 | 03 |
| DAM3-E-MS-A-0050 |  | Steel rails | 2d | 2026-06-13 A | 2026-06-13 A | DAM3-E-PA-A-0070 | 100% | 2026-06-23 | 2026-06-24 | Purchaser [32 h]; Construction Cost | 03 | 03 |
| DAM3-E-MS-A-1760 |  | Identification sign; ID01 & ID02 | 2d | 2026-06-13 A | 2026-06-13 A | DAM3-E-PA-A-0240 | 100% | 2026-06-28 | 2026-06-29 | Purchaser [16 h]; Construction Cost | 03 | 03 |
|  | 2 | **MECHANICAL** |  | 2026-02-05 | 2026-06-13 |  |  |  |  |  |  |  |
| DAM3-E-MS-M-0080 |  | PPR pipes | 2d | 2026-02-05 A | 2026-02-05 A | DAM3-E-PA-M-0030 | 100% | 2026-03-03 | 2026-03-04 | Purchaser [32 h]; Construction Cost | 03 | 04 |
| DAM3-E-MS-M-0250 |  | Fire pumps | 2d | 2026-02-05 A | 2026-02-05 A | DAM3-E-PA-M-0270 | 100% | 2026-04-27 | 2026-04-28 | Purchaser [16 h]; Construction Cost | 03 | 04 |
| DAM3-E-MS-M-0310 |  | Booster pump | 2d | 2026-02-05 A | 2026-02-05 A | DAM3-E-PA-M-0330 | 100% | 2026-05-02 | 2026-05-03 | Purchaser [16 h]; Construction Cost | 03 | 04 |
| DAM3-E-MS-M-0010 |  | U/G HDPE pipes | 2d | 2026-02-07 A | 2026-02-07 A | DAM3-E-PA-M-0070 | 100% | 2026-03-12 | 2026-03-14 | Purchaser [32 h]; Construction Cost | 03 | 04 |
| DAM3-E-MS-M-0030 |  | Fire hose cabinet | 2d | 2026-02-07 A | 2026-02-07 A | DAM3-E-PA-M-0090 | 100% | 2026-03-15 | 2026-03-16 | Purchaser [32 h]; Construction Cost | 03 | 04 |
| DAM3-E-MS-M-0110 |  | UPVC pipes | 2d | 2026-02-07 A | 2026-02-07 A | DAM3-E-PA-M-0160 | 100% | 2026-04-26 | 2026-04-27 | Purchaser [16 h]; Construction Cost | 03 | 04 |
| DAM3-E-MS-M-0150 |  | Electric water heater | 2d | 2026-02-08 A | 2026-02-08 A | DAM3-E-PA-M-0200 | 100% | 2026-04-11 | 2026-04-12 | Purchaser [16 h]; Construction Cost | 03 | 04 |
| DAM3-E-MS-M-0160 |  | Western water closet | 2d | 2026-02-08 A | 2026-02-08 A | DAM3-E-PA-M-0210 | 100% | 2026-04-13 | 2026-04-14 | Purchaser [16 h]; Construction Cost | 03 | 04 |
| DAM3-E-MS-M-0190 |  | Lavatory / wash basin | 2d | 2026-02-08 A | 2026-02-08 A | DAM3-E-PA-M-0240 | 100% | 2026-04-20 | 2026-04-21 | Purchaser [16 h]; Construction Cost | 03 | 04 |
| DAM3-E-MS-M-0140 |  | Gully trap | 2d | 2026-02-09 A | 2026-02-09 A | DAM3-E-PA-M-0190 | 100% | 2026-04-08 | 2026-04-09 | Purchaser [16 h]; Construction Cost | 03 | 04 |
| DAM3-E-MS-M-0180 |  | Toilet Fittings | 2d | 2026-02-09 A | 2026-02-09 A | DAM3-E-PA-M-0230 | 100% | 2026-04-18 | 2026-04-19 | Purchaser [16 h]; Construction Cost | 03 | 04 |
| DAM3-E-MS-M-0020 |  | Seamless black steel or ERW pipes | 2d | 2026-02-10 A | 2026-02-10 A | DAM3-E-PA-M-0010 | 100% | 2026-03-01 | 2026-03-02 | Purchaser [32 h]; Construction Cost | 03 | 04 |
| DAM3-E-MS-M-0040 |  | Automatic air release valve | 2d | 2026-02-10 A | 2026-02-10 A | DAM3-E-PA-M-0100 | 100% | 2026-03-21 | 2026-03-22 | Purchaser [32 h]; Construction Cost | 03 | 04 |
| DAM3-E-MS-M-0050 |  | OS & Y gate valve | 2d | 2026-02-10 A | 2026-02-10 A | DAM3-E-PA-M-0110 | 100% | 2026-03-23 | 2026-03-24 | Purchaser [32 h]; Construction Cost | 03 | 04 |
| DAM3-E-MS-M-0060 |  | Fire alarm check valve | 2d | 2026-02-10 A | 2026-02-10 A | DAM3-E-PA-M-0120 | 100% | 2026-03-25 | 2026-03-26 | Purchaser [32 h]; Construction Cost | 03 | 04 |
| DAM3-E-MS-M-0270 |  | Fire fighting valves | 2d | 2026-02-10 A | 2026-02-10 A | DAM3-E-PA-M-0280 | 100% | 2026-05-21 | 2026-05-23 | Purchaser [16 h]; Construction Cost | 03 | 04 |
| DAM3-E-MS-M-0330 |  | Water supply valves | 2d | 2026-02-10 A | 2026-02-10 A | DAM3-E-PA-M-0350 | 100% | 2026-05-24 | 2026-05-25 | Purchaser [16 h]; Construction Cost | 03 | 04 |
| DAM3-E-MS-M-0090 |  | Ball valve | 2d | 2026-02-14 A | 2026-02-14 A | DAM3-E-PA-M-0140 | 100% | 2026-03-28 | 2026-03-29 | Purchaser [32 h]; Construction Cost | 03 | 04 |
| DAM3-E-MS-M-0170 |  | Bib tap | 2d | 2026-02-14 A | 2026-03-14 A | DAM3-E-PA-M-0220 | 100% | 2026-05-17 | 2026-05-18 | Purchaser [16 h]; Construction Cost | 03 | 04 |
| DAM3-E-MS-M-3410 |  | Water tap | 2d | 2026-02-14 A | 2026-02-14 A | DAM3-E-PA-M-0320 | 100% | 2026-05-09 | 2026-05-10 | Purchaser [16 h]; Construction Cost | 03 | 04 |
| DAM3-E-MS-M-0120 |  | Roof vent caps | 2d | 2026-02-16 A | 2026-02-16 A | DAM3-E-PA-M-0170 | 100% | 2026-02-23 | 2026-02-25 | Purchaser [16 h]; Construction Cost | 03 | 04 |
| DAM3-E-MS-M-0130 |  | Floor drain | 2d | 2026-02-16 A | 2026-02-16 A | DAM3-E-PA-M-0180 | 100% | 2026-02-23 | 2026-02-25 | Purchaser [16 h]; Construction Cost | 03 | 04 |
| DAM3-E-MS-M-0340 |  | Warning tapes | 2d | 2026-02-16 A | 2026-02-16 A | DAM3-E-PA-M-0080 | 100% | 2026-03-12 | 2026-03-14 | Purchaser [32 h]; Construction Cost | 03 | 04 |
| DAM3-E-MS-M-0320 |  | GRP tank | 2d | 2026-03-02 A | 2026-03-02 A | DAM3-E-PA-M-0340 | 100% | 2026-03-16 | 2026-03-21 | Purchaser [16 h]; Construction Cost | 03 | 04 |
| DAM3-E-MS-M-0220 |  | HVAC duct | 2d | 2026-03-04 A | 2026-03-04 A | DAM3-E-PA-M-0040 | 100% | 2026-03-09 | 2026-03-10 | Purchaser [32 h]; Construction Cost | 03 | 04 |
| DAM3-E-MS-M-0230 |  | Flexible duct | 2d | 2026-03-04 A | 2026-03-04 A | DAM3-E-PA-M-0050 | 100% | 2026-03-31 | 2026-04-01 | Purchaser [32 h]; Construction Cost | 03 | 04 |
| DAM3-E-MS-M-0200 |  | Inline exhaust fans | 2d | 2026-03-18 A | 2026-03-18 A | DAM3-E-PA-M-0250 | 100% | 2026-03-29 | 2026-03-30 | Purchaser [16 h]; Construction Cost | 03 | 04 |
| DAM3-E-MS-M-0210 |  | Wall propeller type exhaust fans | 2d | 2026-03-18 A | 2026-03-18 A | DAM3-E-PA-M-0260 | 100% | 2026-03-29 | 2026-03-30 | Purchaser [16 h]; Construction Cost | 03 | 04 |
| DAM3-E-MS-M-0240 |  | Exhaust diffuser | 2d | 2026-06-01 A | 2026-06-01 A | DAM3-E-PA-M-0060 | 100% | 2026-06-14 | 2026-06-15 | Purchaser [32 h]; Construction Cost | 03 | 04 |
| DAM3-E-MS-M-0100 |  | Capped connection | 2d | 2026-06-13 A | 2026-06-13 A | DAM3-E-PA-M-0150 | 100% | 2026-06-23 | 2026-06-24 | Purchaser [16 h]; Construction Cost | 03 | 04 |

| ID | WBS | Activity | Duration | Start | Finish | Predecessors | Complete | Planned start | Planned finish | Resources | Phasing Code Category | Discipline |
| --- | --- | --- | --- | --- | --- | --- | --- | --- | --- | --- | --- | --- |
|  | 3 | **ELECTRICAL** |  | 2026-02-09 | 2026-04-30 |  |  |  |  |  |  |  |
| DAM3-E-MS-E-0040 |  | PVC conduits | 2d | 2026-02-09 A | 2026-02-09 A | DAM3-E-PA-E-0010 | 100% | 2026-03-03 | 2026-03-04 | Purchaser [32 h]; Construction Cost | 03 | 05 |
| DAM3-E-MS-E-0130 |  | Fire alarm system | 2d | 2026-02-11 A | 2026-02-11 A | DAM3-E-PA-E-0180 | 100% | 2026-04-15 | 2026-04-16 | Purchaser [16 h]; Construction Cost | 03 | 05 |
| DAM3-E-MS-E-0240 |  | Access control system | 2d | 2026-02-11 A | 2026-02-11 A | DAM3-E-PA-E-0240 | 100% | 2026-04-27 | 2026-04-28 | Purchaser [16 h]; Construction Cost | 03 | 05 |
| DAM3-E-MS-E-0060 |  | Suspended High Bay LED lights | 2d | 2026-03-03 A | 2026-03-03 A | DAM3-E-PA-E-0120 | 100% | 2026-04-09 | 2026-04-11 | Purchaser [16 h]; Construction Cost | 03 | 05 |
| DAM3-E-MS-E-0070 |  | Flood lights | 2d | 2026-03-03 A | 2026-03-03 A | DAM3-E-PA-E-0130 | 100% | 2026-04-12 | 2026-04-13 | Purchaser [16 h]; Construction Cost | 03 | 05 |
| DAM3-E-MS-E-0080 |  | Recessed mounted LED downlight | 2d | 2026-03-03 A | 2026-03-03 A | DAM3-E-PA-E-0140 | 100% | 2026-04-14 | 2026-04-15 | Purchaser [16 h]; Construction Cost | 03 | 05 |
| DAM3-E-MS-E-0090 |  | LED Emergency Lights wall mounted | 2d | 2026-03-03 A | 2026-03-03 A | DAM3-E-PA-E-0150 | 100% | 2026-04-16 | 2026-04-18 | Purchaser [16 h]; Construction Cost | 03 | 05 |
| DAM3-E-MS-E-0100 |  | LED Emergency Exit Light | 2d | 2026-03-03 A | 2026-03-03 A | DAM3-E-PA-E-0160 | 100% | 2026-04-19 | 2026-04-20 | Purchaser [16 h]; Construction Cost | 03 | 05 |
| DAM3-E-MS-E-0190 |  | Surface mounted lights | 2d | 2026-03-03 A | 2026-03-03 A | DAM3-E-PA-E-0220 | 100% | 2026-04-26 | 2026-04-27 | Purchaser [16 h]; Construction Cost | 03 | 05 |
| DAM3-E-MS-E-0250 |  | Solar system | 2d | 2026-03-03 A | 2026-03-03 A | DAM3-E-PA-E-0250 | 100% | 2026-04-23 | 2026-04-25 | Purchaser [16 h]; Construction Cost | 03 | 05 |
| DAM3-E-MS-E-0170 |  | Street Lighting poles | 2d | 2026-03-04 A | 2026-03-04 A | DAM3-E-PA-E-0200 | 100% | 2026-04-28 | 2026-04-29 | Purchaser [16 h]; Construction Cost | 03 | 05 |
| DAM3-E-MS-E-0140 |  | Wiring devices | 2d | 2026-03-07 A | 2026-03-07 A | DAM3-E-PA-E-0050 | 100% | 2026-03-24 | 2026-03-25 | Purchaser [32 h]; Construction Cost | 03 | 05 |
| DAM3-E-MS-E-210 |  | Cable Tray | 2d | 2026-03-07 A | 2026-03-07 A | DAM3-E-PA-E-0030 | 100% | 2026-03-16 | 2026-03-21 | Purchaser [32 h]; Construction Cost | 03 | 05 |
| DAM3-E-MS-E-0010 |  | Low Voltage cables | 2d | 2026-03-16 A | 2026-03-16 A | DAM3-E-PA-E-0070 | 100% | 2026-03-31 | 2026-04-01 | Purchaser [32 h]; Construction Cost | 03 | 05 |
| DAM3-E-MS-E-0050 |  | Wires | 2d | 2026-03-16 A | 2026-03-16 A | DAM3-E-PA-E-0020 | 100% | 2026-03-24 | 2026-03-25 | Purchaser [32 h]; Construction Cost | 03 | 05 |
| DAM3-E-MS-E-0120 |  | Grounding system | 2d | 2026-03-16 A | 2026-03-16 A | DAM3-E-PA-E-0040 | 100% | 2026-03-26 | 2026-03-28 | Purchaser [32 h]; Construction Cost | 03 | 05 |
| DAM3-E-MS-E-0230 |  | CCTV System | 2d | 2026-03-28 A | 2026-03-28 A | DAM3-E-PA-E-0230 | 100% | 2026-04-14 | 2026-04-15 | Purchaser [16 h]; Construction Cost | 03 | 05 |
| DAM3-E-MS-E-0030 |  | Disconnect switches | 2d | 2026-03-29 A | 2026-03-29 A | DAM3-E-PA-E-0110 | 100% | 2026-04-14 | 2026-04-15 | Purchaser [16 h]; Construction Cost | 03 | 05 |
| DAM3-E-MS-E-0110 |  | Wall mounted, duplex, telephone and data outlet | 1d | 2026-03-29 A | 2026-03-29 A | DAM3-E-PA-E-0170 | 100% | 2026-04-12 | 2026-04-12 | Purchaser [16 h]; Construction Cost | 03 | 05 |
| DAM3-E-MS-E-0020 |  | Main distribution board (MDB) | 2d | 2026-04-26 A | 2026-04-26 A | DAM3-E-PA-E-0080 | 100% | 2026-05-05 | 2026-05-06 | Purchaser [32 h]; Construction Cost | 03 | 05 |
| DAM3-E-MS-E-0180 |  | Distribution board for pump room | 2d | 2026-04-26 A | 2026-04-26 A | DAM3-E-PA-E-0210 | 100% | 2026-05-12 | 2026-05-13 | Purchaser [16 h]; Construction Cost | 03 | 05 |
| DAM3-E-MS-E-190 |  | Lighting panel board | 2d | 2026-04-26 A | 2026-04-26 A | DAM3-E-PA-E-0090 | 100% | 2026-05-07 | 2026-05-09 | Purchaser [32 h]; Construction Cost | 03 | 05 |
| DAM3-E-MS-E-200 |  | PP-AC panel | 2d | 2026-04-26 A | 2026-04-26 A | DAM3-E-PA-E-0100 | 100% | 2026-05-10 | 2026-05-11 | Purchaser [32 h]; Construction Cost | 03 | 05 |
| DAM3-E-MS-E-0160 |  | HDPE ducts | 2d | 2026-04-30 A | 2026-04-30 A | DAM3-E-PA-E-0060 | 100% | 2026-05-10 | 2026-05-11 | Purchaser [32 h]; Construction Cost | 03 | 05 |
| DAM3-E-MS-E-0260 |  | Main program system & controller | 2d | 2026-04-30 A | 2026-04-30 A | DAM3-E-PA-E-0260 | 100% | 2026-05-21 | 2026-05-23 | Purchaser [16 h]; Construction Cost | 03 | 05 |
| DAM3-E-MS-E-0270 |  | PLC controller | 2d | 2026-04-30 A | 2026-04-30 A | DAM3-E-PA-E-0270 | 100% | 2026-05-24 | 2026-05-25 | Purchaser [16 h]; Construction Cost | 03 | 05 |

| ID | WBS | Activity | Duration | Start | Finish | Predecessors | Complete | Planned start | Planned finish | Resources | Cost | Actual cost | Phasing Code Category | Discipline |
| --- | --- | --- | --- | --- | --- | --- | --- | --- | --- | --- | --- | --- | --- | --- |
|  | 4 | **EXTERNAL** |  | 2026-06-11 | 2026-06-11 |  |  |  |  |  |  |  |  |  |
| DAM3-E-MS-EX-0010 |  | Asphalt works | 2d | 2026-06-11 A | 2026-06-11 A | DAM3-E-PA-EX-0010 | 100% | 2026-06-21 | 2026-06-22 | Purchaser [16 h]; Construction Cost |  |  | 03 | 07 |
| DAM3-E-MS-EX-0020 |  | Concrete parking bumper | 2d | 2026-06-11 A | 2026-06-11 A | DAM3-E-PA-EX-0020 | 100% | 2026-06-23 | 2026-06-24 | Purchaser [16 h]; Construction Cost |  |  | 03 | 07 |
| DAM3-E-MS-EX-0030 |  | Road markings | 2d | 2026-06-11 A | 2026-06-11 A | DAM3-E-PA-EX-0030 | 100% | 2026-06-25 | 2026-06-27 | Purchaser [16 h]; Construction Cost |  |  | 03 | 07 |
| DAM3-E-MS-EX-0040 |  | Road signs | 2d | 2026-06-11 A | 2026-06-11 A | DAM3-E-PA-EX-0040 | 100% | 2026-06-28 | 2026-06-29 | Purchaser [16 h]; Construction Cost |  |  | 03 | 07 |
| DAM3-E-MS-EX-0060 |  | Interlock tiles | 2d | 2026-06-11 A | 2026-06-11 A | DAM3-E-PA-EX-0060 | 100% | 2026-06-30 | 2026-07-01 | Purchaser [16 h]; Construction Cost |  |  | 03 | 07 |
| DAM3-E-MS-EX-0070 |  | Curbstones | 2d | 2026-06-11 A | 2026-06-11 A | DAM3-E-PA-EX-0070 | 100% | 2026-07-02 | 2026-07-04 | Purchaser [16 h]; Construction Cost |  |  | 03 | 07 |
| DAM3-E-MS-EX-0080 |  | Gravel bedding | 2d | 2026-06-11 A | 2026-06-11 A | DAM3-E-PA-EX-0080 | 100% | 2026-07-05 | 2026-07-06 | Purchaser [16 h]; Construction Cost |  |  | 03 | 07 |
|  | 5 | **ENVIRONMETAL** |  | 2026-02-08 | 2026-02-18 |  |  |  |  |  |  |  |  |  |
| DAM3-E-MS-EN-0010 |  | HDPE pipes for fire system | 2d | 2026-02-08 A | 2026-02-08 A | DAM3-E-PA-EN-0010 | 100% | 2026-03-03 | 2026-03-04 | Purchaser [32 h]; Construction Cost |  |  | 03 | 07 |
| DAM3-E-MS-EN-0030 |  | HDPE pipes for water supply system | 2d | 2026-02-08 A | 2026-02-08 A | DAM3-E-PA-EN-0030 | 100% | 2026-03-08 | 2026-03-09 | Purchaser [32 h]; Construction Cost |  |  | 03 | 07 |
| DAM3-E-MS-EN-0080 |  | UPVC pipes | 2d | 2026-02-08 A | 2026-02-08 A | DAM3-E-PA-EN-0080 | 100% | 2026-04-30 | 2026-05-02 | Purchaser [32 h]; Construction Cost |  |  | 03 | 07 |
| DAM3-E-MS-EN-0020 |  | Directly buried gate valve for fire system | 2d | 2026-02-16 A | 2026-02-16 A | DAM3-E-PA-EN-0020 | 100% | 2026-03-05 | 2026-03-07 | Purchaser [32 h]; Construction Cost |  |  | 03 | 07 |
| DAM3-E-MS-EN-0040 |  | Directly buried gate valve for water system | 2d | 2026-02-16 A | 2026-02-16 A | DAM3-E-PA-EN-0040 | 100% | 2026-03-10 | 2026-03-11 | Purchaser [32 h]; Construction Cost |  |  | 03 | 07 |
| DAM3-E-MS-EN-0050 |  | Air valve | 2d | 2026-02-18 A | 2026-02-18 A | DAM3-E-PA-EN-0050 | 100% | 2026-02-24 | 2026-02-26 | Purchaser [32 h]; Construction Cost |  |  | 03 | 07 |
| DAM3-E-MS-EN-0060 |  | Washout valve | 2d | 2026-02-18 A | 2026-02-18 A | DAM3-E-PA-EN-0060 | 100% | 2026-02-24 | 2026-02-26 | Purchaser [32 h]; Construction Cost |  |  | 03 | 07 |
| DAM3-E-MS-EN-0070 |  | Gate valve | 2d | 2026-02-18 A | 2026-02-18 A | DAM3-E-PA-EN-0070 | 100% | 2026-02-24 | 2026-02-26 | Purchaser [32 h]; Construction Cost |  |  | 03 | 07 |
|  | 2 | **REVIEW AND APPROVAL** |  | 2026-01-20 | 2026-06-14 |  |  |  |  |  |  |  |  |  |
|  | 6 | **STRUCTURAL** |  | 2026-01-20 | 2026-04-07 |  |  |  |  |  |  |  |  |  |
| DAM3-E-MA-C-0020 |  | Concrete mix | 5d | 2026-01-20 A | 2026-01-20 A | DAM3-E-MS-C-0020 | 100% | 2026-03-01 | 2026-03-05 | Construction Cost [251752] | 251,751.7 | 251,751.7 | 03 | 01 |
| DAM3-E-MA-C-0030 |  | Polyethylene sheet | 5d | 2026-01-22 A | 2026-01-29 A | DAM3-E-MS-C-0030 | 100% | 2026-03-03 | 2026-03-08 | Construction Cost [13036] | 13,035.98 | 13,035.98 | 03 | 01 |
| DAM3-E-MA-C-0040 |  | Bitumen paint | 5d | 2026-01-22 A | 2026-01-29 A | DAM3-E-MS-C-0040 | 100% | 2026-03-05 | 2026-03-10 | Construction Cost [28944.1] | 28,944.1 | 28,944.1 | 03 | 01 |
| DAM3-E-MA-C-0050 |  | Rebar | 5d | 2026-01-22 A | 2026-01-29 A | DAM3-E-MS-C-0050 | 100% | 2026-03-08 | 2026-03-12 | Construction Cost [167834] | 167,834.46 | 167,834.46 | 03 | 01 |
| DAM3-E-MA-C-0010 |  | Anti termite | 5d | 2026-03-14 A | 2026-04-07 A | DAM3-E-MS-C-0010 | 100% | 2026-03-22 | 2026-03-26 | Construction Cost [19546.4] | 19,546.44 | 19,546.44 | 03 | 01 |

| ID | WBS | Activity | Duration | Start | Finish | Predecessors | Complete | Planned start | Planned finish | Resources | Cost | Actual cost | Phasing Code Category | Discipline |
| --- | --- | --- | --- | --- | --- | --- | --- | --- | --- | --- | --- | --- | --- | --- |
|  | 1 | **ARCHITECTURAL** |  | 2026-02-07 | 2026-06-14 |  |  |  |  |  |  |  |  |  |
| DAM3-E-MA-A-0030 |  | Steel ladder | 5d | 2026-02-07 A | 2026-02-10 A | DAM3-E-MS-A-0030 | 100% | 2026-03-11 | 2026-03-16 | Construction Cost [4846.16] | 4,846.16 | 4,846.16 | 03 | 03 |
| DAM3-E-MA-A-1700 |  | PES -Steel Structure | 5d | 2026-02-07 A | 2026-03-17 A | DAM3-E-MS-A-1700, DAM3-E-MS-A-0100 | 100% | 2026-03-12 | 2026-03-21 | Purchaser [80 h]; Construction Cost [799835] | 799,834.94 | 799,834.94 | 03 | 03 |
| DAM3-E-MA-A-0100 |  | Doors | 5d | 2026-02-19 A | 2026-02-25 A | DAM3-E-MS-A-0100 | 100% | 2026-03-08 | 2026-03-14 | Construction Cost [75386.6] | 75,386.56 | 75,386.56 | 03 | 03 |
| DAM3-E-MA-A-0110 |  | Windows | 5d | 2026-02-19 A | 2026-02-25 A | DAM3-E-MS-A-0110 | 100% | 2026-05-24 | 2026-06-01 | Construction Cost [52525.2] | 52,525.19 | 52,525.19 | 03 | 03 |
| DAM3-E-MA-A-0160 |  | Internl paint | 5d | 2026-03-29 A | 2026-05-03 A | DAM3-E-MS-A-0160 | 100% | 2026-04-23 | 2026-04-28 | Construction Cost [21754] | 21,754.04 | 21,754.04 | 03 | 03 |
| DAM3-E-MA-A-0120 |  | Ceramic tiles | 5d | 2026-03-30 A | 2026-05-04 A | DAM3-E-MS-A-0120 | 100% | 2026-04-16 | 2026-04-21 | Construction Cost [36151.3] | 36,151.26 | 36,151.26 | 03 | 03 |
| DAM3-E-MA-A-0170 |  | Gypsum board | 5d | 2026-04-19 A | 2026-06-14 A | DAM3-E-MS-A-0170 | 100% | 2026-05-07 | 2026-05-12 | Construction Cost [23047] | 23,046.95 | 23,046.95 | 03 | 03 |
| DAM3-E-MA-A-0150 |  | Epoxy paint | 4.5d | 2026-04-21 A | 2026-04-26 A | DAM3-E-MS-A-0150 | 100% | 2026-06-01 | 2026-06-06 | Construction Cost [56848.5] | 56,848.54 | 56,848.54 | 03 | 03 |
| DAM3-E-MA-A-1720 |  | Aluminum Composite Panel | 5d | 2026-04-21 A | 2026-04-26 A | DAM3-E-MS-A-1720 | 100% | 2026-06-03 | 2026-06-08 | Purchaser [16 h]; Construction Cost [86631.8] | 86,631.78 | 86,631.78 | 03 | 03 |
| DAM3-E-MA-A-0020 |  | Concrete masonry unit (CMU) | 5d | 2026-04-26 A | 2026-04-29 A | DAM3-E-MS-A-0020 | 100% | 2026-04-30 | 2026-05-05 | Construction Cost [62820.4] | 62,820.36 | 62,820.36 | 03 | 03 |
| DAM3-E-MA-A-0130 |  | Granite strip | 5d | 2026-05-09 A | 2026-05-17 A | DAM3-E-MS-A-0130 | 100% | 2026-05-30 | 2026-06-03 | Construction Cost [330.55] | 330.55 | 330.55 | 03 | 03 |
| DAM3-E-MA-A-0040 |  | Steel gratings | 5d | 2026-05-21 A | 2026-05-24 A | DAM3-E-MS-A-0040 | 100% | 2026-06-09 | 2026-06-14 | Construction Cost [3179.4] | 3,179.4 | 3,179.4 | 03 | 03 |
| DAM3-E-MA-A-1750 |  | Steel fence and gates | 5d | 2026-05-23 A | 2026-05-25 A | DAM3-E-MS-A-1750 | 100% | 2026-06-14 | 2026-06-18 | Purchaser [16 h]; Construction Cost [3548.6] | 3,548.6 | 3,548.6 | 03 | 03 |
| DAM3-E-MA-A-1760 |  | Identification sign; ID01 & ID02 | 5d | 2026-06-08 A | 2026-06-13 A | DAM3-E-MS-A-1760 | 100% |  |  | Purchaser [16 h]; Construction Cost [4743.41] | 4,743.41 | 4,743.41 | 03 | 03 |
| DAM3-E-MA-A-0050 |  | Steel rails | 5d | 2026-06-13 A | 2026-06-14 A | DAM3-E-MS-A-0050 | 100% | 2026-06-25 | 2026-06-30 | Construction Cost [755.54] | 755.54 | 755.54 | 03 | 03 |
|  | 2 | **MECHANICAL** |  | 2026-02-05 | 2026-06-14 |  |  |  |  |  |  |  |  |  |
| DAM3-E-MA-M-0080 |  | PPR pipes | 5d | 2026-02-05 A | 2026-05-11 A | DAM3-E-MS-M-0080 | 100% | 2026-03-05 | 2026-03-10 | Construction Cost [11485.2] | 11,485.19 | 11,485.19 | 03 | 04 |
| DAM3-E-MA-M-0250 |  | Fire pumps | 4.62d | 2026-02-05 A | 2026-02-24 A | DAM3-E-MS-M-0250 | 100% | 2026-04-29 | 2026-05-04 | Construction Cost [15505.3] | 15,505.34 | 15,505.34 | 03 | 04 |
| DAM3-E-MA-M-0310 |  | Booster pump | 4.62d | 2026-02-05 A | 2026-02-11 A | DAM3-E-MS-M-0310 | 100% | 2026-05-04 | 2026-05-09 | Construction Cost [1938.67] | 1,938.67 | 1,938.67 | 03 | 04 |
| DAM3-E-MA-M-0010 |  | U/G HDPE pipes | 5d | 2026-02-07 A | 2026-03-08 A | DAM3-E-MS-M-0010 | 100% | 2026-03-15 | 2026-03-23 | Construction Cost [7495.73] | 7,495.73 | 7,495.73 | 03 | 04 |
| DAM3-E-MA-M-0030 |  | Fire hose cabinet | 5d | 2026-02-07 A | 2026-03-01 A | DAM3-E-MS-M-0030 | 100% | 2026-03-21 | 2026-03-25 | Construction Cost [7466.16] | 7,466.16 | 7,466.16 | 03 | 04 |
| DAM3-E-MA-M-0110 |  | UPVC pipes | 5d | 2026-02-07 A | 2026-04-12 A | DAM3-E-MS-M-0110 | 100% | 2026-04-28 | 2026-05-03 | Construction Cost [19004] | 19,003.97 | 19,003.97 | 03 | 04 |
| DAM3-E-MA-M-0150 |  | Electric water heater | 5d | 2026-02-08 A | 2026-03-01 A | DAM3-E-MS-M-0150 | 100% | 2026-04-13 | 2026-04-18 | Construction Cost [896.17] | 896.17 | 896.17 | 03 | 04 |
| DAM3-E-MA-M-0160 |  | Western water closet | 4.75d | 2026-02-08 A | 2026-05-17 A | DAM3-E-MS-M-0160 | 100% | 2026-04-15 | 2026-04-20 | Construction Cost [9812.19] | 9,812.19 | 9,812.19 | 03 | 04 |
| DAM3-E-MA-M-0190 |  | Lavatory / wash basin | 4.75d | 2026-02-08 A | 2026-05-17 A | DAM3-E-MS-M-0190 | 100% | 2026-04-22 | 2026-04-27 | Construction Cost [10548.5] | 10,548.52 | 10,548.52 | 03 | 04 |
| DAM3-E-MA-M-0140 |  | Gully trap | 5d | 2026-02-09 A | 2026-02-26 A | DAM3-E-MS-M-0140 | 100% | 2026-04-11 | 2026-04-15 | Construction Cost [2397.38] | 2,397.38 | 2,397.38 | 03 | 04 |
| DAM3-E-MA-M-0180 |  | Toilet Fittings | 4.75d | 2026-02-09 A | 2026-06-01 A | DAM3-E-MS-M-0180 | 100% | 2026-04-20 | 2026-04-25 | Construction Cost [11319.1] | 11,319.13 | 11,319.13 | 03 | 04 |
| DAM3-E-MA-M-0020 |  | Seamless black steel or ERW pipes | 5d | 2026-02-10 A | 2026-02-26 A | DAM3-E-MS-M-0020 | 100% | 2026-03-03 | 2026-03-08 | Construction Cost [35657.1] | 35,657.12 | 35,657.12 | 03 | 04 |
| DAM3-E-MA-M-0040 |  | Automatic air release valve | 5d | 2026-02-10 A | 2026-02-26 A | DAM3-E-MS-M-0040 | 100% | 2026-03-23 | 2026-03-28 | Construction Cost [265.43] | 265.43 | 265.43 | 03 | 04 |
| DAM3-E-MA-M-0050 |  | OS & Y gate valve | 4.5d | 2026-02-10 A | 2026-02-26 A | DAM3-E-MS-M-0050 | 100% | 2026-03-25 | 2026-03-30 | Construction Cost [1744.73] | 1,744.73 | 1,744.73 | 03 | 04 |
| DAM3-E-MA-M-0060 |  | Fire alarm check valve | 5d | 2026-02-10 A | 2026-02-26 A | DAM3-E-MS-M-0060 | 100% | 2026-03-28 | 2026-04-01 | Construction Cost [3998.51] | 3,998.51 | 3,998.51 | 03 | 04 |
| DAM3-E-MA-M-0270 |  | Fire fighting valves | 4.62d | 2026-02-10 A | 2026-03-26 A | DAM3-E-MS-M-0270 | 100% | 2026-05-24 | 2026-06-01 | Construction Cost [1332.84] | 1,332.84 | 1,332.84 | 03 | 04 |
| DAM3-E-MA-M-0330 |  | Water supply valves | 4.62d | 2026-02-10 A | 2026-03-26 A | DAM3-E-MS-M-0330 | 100% | 2026-05-30 | 2026-06-03 | Construction Cost [467.18] | 467.18 | 467.18 | 03 | 04 |
| DAM3-E-MA-M-0090 |  | Ball valve | 5d | 2026-02-14 A | 2026-04-16 A | DAM3-E-MS-M-0090 | 100% | 2026-03-30 | 2026-04-04 | Construction Cost [2134.82] | 2,134.82 | 2,134.82 | 03 | 04 |
| DAM3-E-MA-M-0170 |  | Bib tap | 4.75d | 2026-02-14 A | 2026-04-16 A | DAM3-E-MS-M-0170 | 100% | 2026-05-19 | 2026-05-24 | Construction Cost [936.14] | 936.14 | 936.14 | 03 | 04 |
| DAM3-E-MA-M-3410 |  | Water tap | 5d | 2026-02-14 A | 2026-04-16 A | DAM3-E-MS-M-3410 | 100% | 2026-05-11 | 2026-05-16 | Purchaser [16 h]; Construction Cost [1415.62] | 1,415.62 | 1,415.62 | 03 | 04 |
| DAM3-E-MA-M-0120 |  | Roof vent caps | 5d | 2026-02-16 A | 2026-06-14 A | DAM3-E-MS-M-0120 | 100% | 2026-02-25 | 2026-03-03 | Construction Cost [456.64] | 456.64 | 456.64 | 03 | 04 |
| DAM3-E-MA-M-0130 |  | Floor drain | 5d | 2026-02-16 A | 2026-06-04 A | DAM3-E-MS-M-0130 | 100% | 2026-02-25 | 2026-03-03 | Construction Cost [11114] | 11,113.99 | 11,113.99 | 03 | 04 |
| DAM3-E-MA-M-0340 |  | Warning tapes | 5d | 2026-02-16 A | 2026-03-03 A | DAM3-E-MS-M-0340 | 100% | 2026-03-15 | 2026-03-23 | Construction Cost [2111.55] | 2,111.55 | 2,111.55 | 03 | 04 |
| DAM3-E-MA-M-0320 |  | GRP tank | 4.62d | 2026-03-02 A | 2026-04-07 A | DAM3-E-MS-M-0320 | 100% | 2026-03-22 | 2026-03-26 | Construction Cost [31478] | 31,477.96 | 31,477.96 | 03 | 04 |
| DAM3-E-MA-M-0220 |  | HVAC duct | 5d | 2026-03-04 A | 2026-05-12 A | DAM3-E-MS-M-0220 | 100% | 2026-03-11 | 2026-03-16 | Construction Cost [73629.1] | 73,629.07 | 73,629.07 | 03 | 04 |
| DAM3-E-MA-M-0230 |  | Flexible duct | 5d | 2026-03-04 A | 2026-05-12 A | DAM3-E-MS-M-0230 | 100% | 2026-04-02 | 2026-04-07 | Construction Cost [10444.5] | 10,444.45 | 10,444.45 | 03 | 04 |
| DAM3-E-MA-M-0200 |  | Inline exhaust fans | 4.75d | 2026-03-18 A | 2026-04-19 A | DAM3-E-MS-M-0200 | 100% | 2026-03-31 | 2026-04-05 | Construction Cost [4121.24] | 4,121.24 | 4,121.24 | 03 | 04 |
| DAM3-E-MA-M-0210 |  | Wall propeller type exhaust fans | 4.75d | 2026-03-18 A | 2026-04-19 A | DAM3-E-MS-M-0210, DAM3-E-MA-M-0180 | 100% | 2026-03-31 | 2026-04-05 | Construction Cost [23066.3] | 23,066.33 | 23,066.33 | 03 | 04 |
| DAM3-E-MA-M-0240 |  | Exhaust diffuser | 5d | 2026-06-01 A | 2026-06-04 A | DAM3-E-MS-M-0240 | 100% | 2026-06-16 | 2026-06-21 | Construction Cost [1056] | 1,056 | 1,056 | 03 | 04 |
| DAM3-E-MA-M-0100 |  | Capped connection | 5d | 2026-06-13 A | 2026-06-14 A | DAM3-E-MS-M-0100 | 100% | 2026-06-25 | 2026-06-30 | Construction Cost [136.99] | 136.99 | 136.99 | 03 | 04 |

| ID | WBS | Activity | Duration | Start | Finish | Predecessors | Complete | Planned start | Planned finish | Resources | Cost | Actual cost | Phasing Code Category | Discipline |
| --- | --- | --- | --- | --- | --- | --- | --- | --- | --- | --- | --- | --- | --- | --- |
|  | 3 | **ELECTRICAL** |  | 2026-02-09 | 2026-06-14 |  |  |  |  |  |  |  |  |  |
| DAM3-E-MA-E-0040 |  | PVC conduits | 5d | 2026-02-09 A | 2026-03-01 A | DAM3-E-MS-E-0040 | 100% | 2026-03-05 | 2026-03-10 | Construction Cost [2360.8] | 2,360.8 | 2,360.8 | 03 | 05 |
| DAM3-E-MA-E-0130 |  | Fire alarm system | 5d | 2026-02-11 A | 2026-03-30 A | DAM3-E-MS-E-0130 | 100% | 2026-04-18 | 2026-04-22 | Construction Cost [41920.1] | 41,920.11 | 41,920.11 | 03 | 05 |
| DAM3-E-MA-E-0240 |  | Access control system | 5d | 2026-02-11 A | 2026-03-07 A | DAM3-E-MS-E-0240 | 100% | 2026-04-29 | 2026-05-04 | Construction Cost [13602.3] | 13,602.34 | 13,602.34 | 03 | 05 |
| DAM3-E-MA-E-0060 |  | Suspended High Bay LED lights | 5d | 2026-03-03 A | 2026-03-07 A | DAM3-E-MS-E-0060 | 100% | 2026-04-12 | 2026-04-16 | Construction Cost [14938] | 14,938.02 | 14,938.02 | 03 | 05 |
| DAM3-E-MA-E-0070 |  | Flood lights | 5d | 2026-03-03 A | 2026-03-07 A | DAM3-E-MS-E-0070 | 100% | 2026-04-14 | 2026-04-19 | Construction Cost [2268.18] | 2,268.18 | 2,268.18 | 03 | 05 |
| DAM3-E-MA-E-0080 |  | Recessed mounted LED downlight | 5d | 2026-03-03 A | 2026-03-07 A | DAM3-E-MS-E-0080 | 100% | 2026-04-16 | 2026-04-21 | Construction Cost [20081.1] | 20,081.13 | 20,081.13 | 03 | 05 |
| DAM3-E-MA-E-0090 |  | LED Emergency Lights wall mounted | 5d | 2026-03-03 A | 2026-03-07 A | DAM3-E-MS-E-0090 | 100% | 2026-04-19 | 2026-04-23 | Construction Cost [4144.06] | 4,144.06 | 4,144.06 | 03 | 05 |
| DAM3-E-MA-E-0100 |  | LED Emergency Exit Light | 5d | 2026-03-03 A | 2026-03-07 A | DAM3-E-MS-E-0100 | 100% | 2026-04-21 | 2026-04-26 | Construction Cost [1145.13] | 1,145.13 | 1,145.13 | 03 | 05 |
| DAM3-E-MA-E-0190 |  | Surface mounted lights | 5d | 2026-03-03 A | 2026-03-07 A | DAM3-E-MS-E-0190 | 100% | 2026-04-28 | 2026-05-03 | Construction Cost [11068.8] | 11,068.82 | 11,068.82 | 03 | 05 |
| DAM3-E-MA-E-0250 |  | Solar system | 4d | 2026-03-03 A | 2026-04-25 A | DAM3-E-MS-E-0250 | 100% | 2026-03-03 | 2026-03-07 | Construction Cost [124744] | 124,744.29 | 124,744.29 | 03 | 05 |
| DAM3-E-MA-E-0170 |  | Street Lighting poles | 4d | 2026-03-04 A | 2026-05-20 A | DAM3-E-MS-E-0170 | 100% | 2026-04-30 | 2026-05-04 | Construction Cost [10525.3] | 10,525.31 | 10,525.31 | 03 | 05 |
| DAM3-E-MA-E-0140 |  | Wiring devices | 5d | 2026-03-07 A | 2026-03-08 A | DAM3-E-MS-E-0140 | 100% | 2026-03-26 | 2026-03-31 | Construction Cost [9962.15] | 9,962.15 | 9,962.15 | 03 | 05 |
| DAM3-E-MA-E-210 |  | Cable Tray | 5d | 2026-03-07 A | 2026-03-08 A | DAM3-E-MS-E-210 | 100% | 2026-03-22 | 2026-03-26 | Purchaser [80 h]; Construction Cost [159.57] | 159.57 | 159.57 | 03 | 05 |
| DAM3-E-MA-E-0010 |  | Low Voltage cables | 5d | 2026-03-16 A | 2026-03-29 A | DAM3-E-MS-E-0010 | 100% | 2026-04-02 | 2026-04-07 | Construction Cost [44855.2] | 44,855.17 | 44,855.17 | 03 | 05 |
| DAM3-E-MA-E-0050 |  | Wires | 5d | 2026-03-16 A | 2026-03-29 A | DAM3-E-MS-E-0050 | 100% | 2026-03-26 | 2026-03-31 | Construction Cost [1106.91] | 1,106.91 | 1,106.91 | 03 | 05 |
| DAM3-E-MA-E-0120 |  | Grounding system | 5d | 2026-03-16 A | 2026-03-29 A | DAM3-E-MS-E-0120 | 100% | 2026-03-29 | 2026-04-02 | Construction Cost [9771.19] | 9,771.19 | 9,771.19 | 03 | 05 |
| DAM3-E-MA-E-0230 |  | CCTV System | 4d | 2026-03-28 A | 2026-04-13 A | DAM3-E-MS-E-0230 | 100% | 2026-04-16 | 2026-04-20 | Construction Cost [37604.8] | 37,604.85 | 37,604.85 | 03 | 05 |
| DAM3-E-MA-E-0030 |  | Disconnect switches | 5d | 2026-03-29 A | 2026-06-14 A | DAM3-E-MS-E-0030 | 100% | 2026-04-16 | 2026-04-21 | Construction Cost [15086.4] | 15,086.41 | 15,086.41 | 03 | 05 |
| DAM3-E-MA-E-0110 |  | Wall mounted, duplex, telephone and data outlet | 4d | 2026-03-29 A | 2026-04-13 A | DAM3-E-MS-E-0110 | 100% | 2026-04-13 | 2026-04-16 | Construction Cost [13294.1] | 13,294.12 | 13,294.12 | 03 | 05 |
| DAM3-E-MA-E-0020 |  | Main distribution board (MDB) | 4.5d | 2026-04-26 A | 2026-05-12 A | DAM3-E-MS-E-0020 | 100% | 2026-05-07 | 2026-05-12 | Construction Cost [15994] | 15,994.03 | 15,994.03 | 03 | 05 |
| DAM3-E-MA-E-0180 |  | Distribution board for pump room | 4d | 2026-04-26 A | 2026-05-12 A | DAM3-E-MS-E-0180 | 100% | 2026-05-14 | 2026-05-18 | Construction Cost [11002.7] | 11,002.71 | 11,002.71 | 03 | 05 |
| DAM3-E-MA-E-190 |  | Lighting panel board | 5d | 2026-04-26 A | 2026-05-12 A | DAM3-E-MS-E-190 | 100% | 2026-05-10 | 2026-05-14 | Purchaser [80 h]; Construction Cost [9064.43] | 9,064.43 | 9,064.43 | 03 | 05 |
| DAM3-E-MA-E-200 |  | PP-AC panel | 5d | 2026-04-26 A | 2026-05-12 A | DAM3-E-MS-E-200 | 100% | 2026-05-12 | 2026-05-17 | Purchaser [16 h]; Construction Cost [10662.7] | 10,662.68 | 10,662.68 | 03 | 05 |
| DAM3-E-MA-E-0160 |  | HDPE ducts | 5d | 2026-04-30 A | 2026-05-03 A | DAM3-E-MS-E-0160 | 100% | 2026-05-12 | 2026-05-17 | Construction Cost [26403] | 26,402.96 | 26,402.96 | 03 | 05 |
| DAM3-E-MA-E-0260 |  | Main program system & controller | 5d | 2026-04-30 A | 2026-05-12 A | DAM3-E-MS-E-0260 | 100% | 2026-05-24 | 2026-06-01 | Construction Cost [12578.1] | 12,578.11 | 12,578.11 | 03 | 05 |
| DAM3-E-MA-E-0270 |  | PLC controller | 5d | 2026-04-30 A | 2026-05-12 A | DAM3-E-MS-E-0270 | 100% | 2026-05-30 | 2026-06-03 | Construction Cost [8486] | 8,486 | 8,486 | 03 | 05 |

| ID | WBS | Activity | Duration | Start | Finish | Predecessors | Complete | Planned start | Planned finish | Resources | Cost | Actual cost | Phasing Code Category | Discipline |
| --- | --- | --- | --- | --- | --- | --- | --- | --- | --- | --- | --- | --- | --- | --- |
|  | 4 | **EXTERNAL** |  | 2026-06-11 | 2026-06-13 |  |  |  |  |  |  |  |  |  |
| DAM3-E-MA-EX-0010 |  | Asphalt works | 5d | 2026-06-11 A | 2026-06-13 A | DAM3-E-MS-EX-0010 | 100% | 2026-05-31 | 2026-06-04 | Construction Cost [280348] | 280,347.76 | 280,347.76 | 03 | 07 |
| DAM3-E-MA-EX-0020 |  | Concrete parking bumper | 4.62d | 2026-06-11 A | 2026-06-13 A | DAM3-E-MS-EX-0020 | 100% | 2026-06-25 | 2026-06-30 | Construction Cost [1433.72] | 1,433.72 | 1,433.72 | 03 | 07 |
| DAM3-E-MA-EX-0030 |  | Road markings | 4.62d | 2026-06-11 A | 2026-06-13 A | DAM3-E-MS-EX-0030 | 100% | 2026-06-28 | 2026-07-02 | Construction Cost [1696.34] | 1,696.34 | 1,696.34 | 03 | 07 |
| DAM3-E-MA-EX-0040 |  | Road signs | 4.62d | 2026-06-11 A | 2026-06-13 A | DAM3-E-MS-EX-0040 | 100% | 2026-06-08 | 2026-06-13 | Construction Cost [4654.29] | 4,654.29 | 4,654.29 | 03 | 07 |
| DAM3-E-MA-EX-0060 |  | Interlock tiles | 4.62d | 2026-06-11 A | 2026-06-13 A | DAM3-E-MS-EX-0060 | 100% | 2026-06-10 | 2026-06-15 | Construction Cost [21297] | 21,297.02 | 21,297.02 | 03 | 07 |
| DAM3-E-MA-EX-0070 |  | Curbstones | 4.62d | 2026-06-11 A | 2026-06-13 A | DAM3-E-MS-EX-0070 | 100% | 2026-06-13 | 2026-06-17 | Construction Cost [13036.9] | 13,036.86 | 13,036.86 | 03 | 07 |
| DAM3-E-MA-EX-0080 |  | Gravel bedding | 5d | 2026-06-11 A | 2026-06-13 A | DAM3-E-MS-EX-0080 | 100% | 2026-06-15 | 2026-06-20 | Construction Cost [9917.68] | 9,917.68 | 9,917.68 | 03 | 07 |
|  | 5 | **ENVIRONMETAL** |  | 2026-02-08 | 2026-06-14 |  |  |  |  |  |  |  |  |  |
| DAM3-E-MA-EN-0010 |  | HDPE pipes for fire system | 5d | 2026-02-08 A | 2026-02-26 A | DAM3-E-MS-EN-0010 | 100% | 2026-03-05 | 2026-03-10 | Construction Cost [21745.9] | 21,745.93 | 21,745.93 | 03 | 07 |
| DAM3-E-MA-EN-0030 |  | HDPE pipes for water supply system | 5d | 2026-02-08 A | 2026-02-26 A | DAM3-E-MS-EN-0030 | 100% | 2026-03-10 | 2026-03-15 | Construction Cost [1598.26] | 1,598.26 | 1,598.26 | 03 | 07 |
| DAM3-E-MA-EN-0080 |  | UPVC pipes | 4.5d | 2026-02-08 A | 2026-02-26 A | DAM3-E-MS-EN-0080 | 100% | 2026-05-03 | 2026-05-07 | Construction Cost [20218.3] | 20,218.26 | 20,218.26 | 03 | 07 |
| DAM3-E-MA-EN-0020 |  | Directly buried gate valve for fire system | 5d | 2026-02-16 A | 2026-05-25 A | DAM3-E-MS-EN-0020 | 100% | 2026-03-08 | 2026-03-12 | Construction Cost [1090.5] | 1,090.5 | 1,090.5 | 03 | 07 |
| DAM3-E-MA-EN-0040 |  | Directly buried gate valve for water system | 5d | 2026-02-16 A | 2026-05-25 A | DAM3-E-MS-EN-0040 | 100% | 2026-03-12 | 2026-03-21 | Construction Cost [2414.78] | 2,414.78 | 2,414.78 | 03 | 07 |
| DAM3-E-MA-EN-0050 |  | Air valve | 5d | 2026-02-18 A | 2026-02-26 A | DAM3-E-MS-EN-0050 | 100% | 2026-02-24 | 2026-03-02 | Construction Cost [1963.06] | 1,963.06 | 1,963.06 | 03 | 07 |
| DAM3-E-MA-EN-0060 |  | Washout valve | 5d | 2026-02-18 A | 2026-06-14 A | DAM3-E-MS-EN-0060 | 100% | 2026-02-24 | 2026-03-02 | Construction Cost [2302.04] | 2,302.04 | 2,302.04 | 03 | 07 |
| DAM3-E-MA-EN-0070 |  | Gate valve | 5d | 2026-02-18 A | 2026-06-14 A | DAM3-E-MS-EN-0070 | 100% | 2026-02-24 | 2026-03-02 | Construction Cost [6398.75] | 6,398.75 | 6,398.75 | 03 | 07 |
|  | 3 | **METHOD STATEMENTS** |  | 2026-02-07 | 2026-06-23 |  |  |  |  |  |  |  |  |  |
|  | 1 | **PREPARATION AND SUBMITTAL** |  | 2026-02-07 | 2026-06-22 |  |  |  |  |  |  |  |  |  |
| DAM3-E-MT-C-0010 |  | Method Statement for Structural Works | 7d | 2026-02-07 A | 2026-06-22 A | DAM3-E-MS-C-0010 | 100% | 2026-02-25 | 2026-03-05 | Engineer [453 h] |  |  | 03 | 01 |
| DAM3-E-MT-A-0020 |  | Method Statement for Architectural Works | 7d | 2026-03-05 A | 2026-06-22 A | DAM3-E-MT-C-0010 | 100% | 2026-03-05 | 2026-03-14 | Engineer [112 h] |  |  | 03 | 03 |
| DAM3-E-MT-E-0040 |  | Method Statement for Electrical Works | 7d | 2026-05-10 A | 2026-06-22 A | DAM3-E-MT-M-0030 | 100% | 2026-06-06 | 2026-06-14 | Engineer [112 h] |  |  | 03 | 05 |
| DAM3-E-MT-M-0030 |  | Method Statement for Mechanical Works | 7d | 2026-05-10 A | 2026-06-22 A | DAM3-E-MT-A-0020 | 100% | 2026-05-25 | 2026-06-06 | Engineer [112 h] |  |  | 03 | 04 |
| DAM3-E-MT-ENV-0060 |  | Method Statement for Environmental Works | 8d | 2026-06-21 A | 2026-06-22 A | DAM3-E-MT-EX-0050 | 100% | 2026-07-04 | 2026-07-13 | Engineer [128 h] |  |  | 03 | 07 |
| DAM3-E-MT-EX-0050 |  | Method Statement for External Works | 7d | 2026-06-21 A | 2026-06-22 A | DAM3-E-MT-E-0040 | 100% | 2026-06-25 | 2026-07-04 | Engineer [112 h] |  |  | 03 | 07 |

| ID | WBS | Activity | Duration | Start | Finish | Predecessors | Complete | Planned start | Planned finish | Resources | Phasing Code Category | Discipline | Procurement Lead Category | Procurement Stages |
| --- | --- | --- | --- | --- | --- | --- | --- | --- | --- | --- | --- | --- | --- | --- |
|  | 2 | **REVIEW AND APPROVAL** |  | 2026-02-07 | 2026-06-23 |  |  |  |  |  |  |  |  |  |
| DAM3-E-MT-C-1010 |  | Method Statement for Structural Works | 10d | 2026-02-07 A | 2026-06-23 A | DAM3-E-MT-C-0010 | 100% | 2026-05-25 | 2026-06-09 | Engineer [160 h] | 03 | 01 |  |  |
| DAM3-E-MT-A-1020 |  | Method Statement for Architectural Works | 10d | 2026-03-05 A | 2026-06-23 A | DAM3-E-MT-C-1010, DAM3-E-MT-A-0020 | 100% | 2026-06-09 | 2026-06-21 | Engineer [160 h] | 03 | 03 |  |  |
| DAM3-E-MT-E-1040 |  | Method Statement for Electrical Works | 10d | 2026-05-10 A | 2026-06-23 A | DAM3-E-MT-M-1030, DAM3-E-MT-E-0040 | 100% | 2026-07-02 | 2026-07-14 | Engineer [160 h] | 03 | 05 |  |  |
| DAM3-E-MT-M-1030 |  | Method Statement for Mechanical Works | 10d | 2026-05-10 A | 2026-06-23 A | DAM3-E-MT-A-1020, DAM3-E-MT-M-0030 | 100% | 2026-06-21 | 2026-07-02 | Engineer [160 h] | 03 | 04 |  |  |
| DAM3-E-MT-ENV-1060 |  | Method Statement for Environmental Works | 10d | 2026-06-21 A | 2026-06-23 A | DAM3-E-MT-EX-1050, DAM3-E-MT-ENV-0060 | 100% | 2026-07-15 | 2026-07-27 | Engineer [16 h] | 03 | 07 |  |  |
| DAM3-E-MT-EX-1050 |  | Method Statement for External Works | 10d | 2026-06-21 A | 2026-06-23 A | DAM3-E-MT-E-1040, DAM3-E-MT-EX-0050 | 100% | 2026-07-04 | 2026-07-15 | Engineer [160 h] | 03 | 07 |  |  |
|  | 3 | **STAGING** |  | 2026-02-09 | 2026-06-23 |  |  |  |  |  |  |  |  |  |
| DAM3-E-MT-C-2010 |  | Method Statement for Structural Works | 1d | 2026-02-09 A | 2026-06-23 A | DAM3-E-MT-C-1010 | 100% | 2026-06-09 | 2026-06-10 | Engineer [16 h] | 03 | 01 |  |  |
| DAM3-E-MT-E-2040 |  | Method Statement for Electrical Works | 1d | 2026-05-10 A | 2026-06-23 A | DAM3-E-MT-E-1040, DAM3-E-MT-M-2030 | 100% | 2026-07-14 | 2026-07-15 | Engineer [16 h] | 03 | 05 |  |  |
| DAM3-E-MT-M-2030 |  | Method Statement for Mechanical Works | 1d | 2026-05-10 A | 2026-06-23 A | DAM3-E-MT-M-1030, DAM3-E-MT-A-2020 | 100% | 2026-07-02 | 2026-07-04 | Engineer [16 h] | 03 | 04 |  |  |
| DAM3-E-MT-A-2020 |  | Method Statement for Architectural Works | 4d | 2026-06-21 A | 2026-06-23 A | DAM3-E-MT-A-1020 | 100% | 2026-06-25 | 2026-06-30 | Engineer [64 h] | 03 | 03 |  |  |
| DAM3-E-MT-ENV-2060 |  | Method Statement for Environmental Works | 1d | 2026-06-21 A | 2026-06-23 A | DAM3-E-MT-ENV-1060 | 100% | 2026-07-27 | 2026-07-28 | Engineer [16 h] | 03 | 07 |  |  |
| DAM3-E-MT-EX-2050 |  | Method Statement for External Works | 1d | 2026-06-21 A | 2026-06-23 A | DAM3-E-MT-EX-1050, DAM3-E-MT-E-2040 | 100% | 2026-07-15 | 2026-07-16 | Engineer [16 h] | 03 | 07 |  |  |
|  | 4 | **PROCUREMENT (20%)** |  | 2026-01-14 | 2026-09-27 |  |  |  |  |  |  |  |  |  |
|  | 2 | **LONG LEAD MATERIALS** |  | 2026-01-14 | 2026-09-27 |  |  |  |  |  |  |  |  |  |
|  | 1 | **ARCHITECTURAL** |  | 2026-01-14 | 2026-08-20 |  |  |  |  |  |  |  |  |  |
|  | 1 | **PO ISSUE** |  | 2026-01-14 | 2026-03-22 |  |  |  |  |  |  |  |  |  |
| DAM3-E-PO-A-1700 |  | PES -Steel Structure | 5d | 2026-01-14 A | 2026-01-14 A | DAM3-E-MA-A-1700 | 100% | 2026-04-09 | 2026-04-14 | Purchaser [80 h] | 04 | 03 | 01 | 01 |
| DAM3-P-PO-A-180 |  | Doors | 5d | 2026-03-18 A | 2026-03-18 A | DAM3-E-MA-A-0100 | 100% | 2026-07-21 | 2026-07-26 | Purchaser [80 h] | 04 | 03 | 01 | 01 |
| DAM3-P-PO-A-190 |  | Windows | 5d | 2026-03-22 A | 2026-03-22 A | DAM3-E-MA-A-0110 | 100% | 2026-07-21 | 2026-07-26 | Purchaser [80 h] | 04 | 03 | 01 | 01 |
|  | 2 | **MANUFACTURING** |  | 2026-01-14 | 2026-06-23 |  |  |  |  |  |  |  |  |  |
| DAM3-E-MF-A-1700 |  | PES -Steel Structure | 45d | 2026-01-14 A | 2026-05-25 A | DAM3-E-PO-A-1700 | 100% | 2026-03-11 | 2026-05-06 | Purchaser [560 h] | 04 | 03 | 01 | 02 |
| DAM3-P-MF-A-180 |  | Doors | 90d | 2026-03-21 A | 2026-06-23 A | DAM3-P-PO-A-180 | 100% | 2026-03-21 | 2026-07-07 | Loading workers [440 h] | 04 | 03 | 01 | 02 |
| DAM3-P-MF-A-190 |  | Windows | 90d | 2026-03-25 A | 2026-06-23 A | DAM3-P-PO-A-190 | 100% | 2026-03-25 | 2026-07-12 | Loading workers [60 h] | 04 | 03 | 01 | 02 |

| ID | WBS | Activity | Duration | Start | Finish | Predecessors | Complete | Planned start | Planned finish | Resources | Cost | Actual cost | Phasing Code Category | Discipline | Procurement Lead Category | Procurement Stages |
| --- | --- | --- | --- | --- | --- | --- | --- | --- | --- | --- | --- | --- | --- | --- | --- | --- |
|  | 4 | **DELIVERY TO SITE** |  | 2026-05-31 | 2026-08-20 |  |  |  |  |  |  |  |  |  |  |  |
| DAM3-P-DL-A-1700 |  | PES -Steel Structure -1 | 7d | 2026-05-31 A | 2026-05-31 A | DAM3-E-MF-A-1700 | 100% | 2026-06-20 | 2026-06-28 | Purchaser [32 h]; Construction Cost [2369270] | 2,369,269.97 | 2,369,269.97 | 04 | 03 | 01 | 03 |
| DAM3-P-DL-A-1770 |  | PES -Steel Structure -2 | 7d | 2026-06-10 A | 2026-06-14 A | DAM3-P-DL-A-1700 | 100% | 2026-06-30 | 2026-07-08 | Purchaser [112 h]; Construction Cost [740741] | 740,740.74 | 740,740.74 | 04 | 03 | 01 | 03 |
| DAM3-P-DL-A-1780 |  | PES -Steel Structure -3 | 7d | 2026-06-14 A | 2026-07-14 A | DAM3-P-MF-A-180, DAM3-P-MF-A-180 FF | 100% | 2026-07-15 | 2026-07-22 | Purchaser [112 h]; Construction Cost [740741] | 740,740.74 | 740,740.74 | 04 | 03 | 01 | 03 |
| DAM3-P-DL-A-1790 |  | PES -Steel Structure -4 | 7d | 2026-07-01 A | 2026-07-01 A | DAM3-P-DL-A-1780, DAM3-P-DL-A-1780 FF | 100% | 2026-07-15 | 2026-07-22 | Purchaser [112 h]; Construction Cost [1481481] | 1,481,481.48 | 1,481,481.48 | 04 | 03 | 01 | 03 |
| DAM3-P-DL-A-180 |  | Doors | 7d | 2026-08-18 A | 2026-08-20 A | DAM3-P-MF-A-180 | 100% | 2026-08-18 | 2026-08-25 | Unloading workers [112 h]; Construction Cost [502577] | 502,577.07 | 502,577.07 | 04 | 03 | 01 | 03 |
| DAM3-P-DL-A-190 |  | Windows | 7d | 2026-08-19 A | 2026-08-20 A | DAM3-P-MF-A-190 | 100% | 2026-08-19 | 2026-08-26 | Unloading workers [112 h]; Construction Cost [350168] | 350,167.93 | 350,167.93 | 04 | 03 | 01 | 03 |
|  | 5 | **STAGING TIME** |  | 2026-07-21 | 2026-08-20 |  |  |  |  |  |  |  |  |  |  |  |
| DAM3-E-ST-A-1700 |  | PES -Steel Structure | 2d | 2026-07-21 A | 2026-07-22 A | DAM3-P-DL-A-1700 | 100% |  |  |  |  |  | 04 | 03 | 01 | 04 |
| DAM3-P-ST-A-180 |  | Doors | 7d | 2026-08-18 A | 2026-08-20 A | DAM3-P-DL-A-180 | 100% | 2026-08-26 | 2026-09-02 |  |  |  | 04 | 03 | 01 | 04 |
| DAM3-P-ST-A-190 |  | Windows | 7d | 2026-08-19 A | 2026-08-20 A | DAM3-P-DL-A-190 | 100% | 2026-08-19 | 2026-08-27 |  |  |  | 04 | 03 | 01 | 04 |
|  | 3 | **ELECTRICAL** |  | 2026-03-24 | 2026-09-27 |  |  |  |  |  |  |  |  |  |  |  |
|  | 1 | **PO ISSUE** |  | 2026-03-24 | 2026-03-24 |  |  |  |  |  |  |  |  |  |  |  |
| DAM3-E-PO-E-0230 |  | CCTV System | 5d | 2026-03-24 A | 2026-03-24 A | DAM3-E-MA-E-0230 | 100% | 2026-06-23 | 2026-06-28 |  |  |  | 04 | 05 | 01 | 01 |
| DAM3-E-PO-E-0240 |  | Access control system | 5d | 2026-03-24 A | 2026-03-24 A | DAM3-E-MA-E-0240 | 100% | 2026-06-23 | 2026-06-28 |  |  |  | 04 | 05 | 01 | 01 |
| DAM3-E-PO-E-0250 |  | Solar system | 5d | 2026-03-24 A | 2026-03-24 A | DAM3-E-MA-E-0250 | 100% | 2026-06-23 | 2026-06-28 |  |  |  | 04 | 05 | 01 | 01 |
| DAM3-E-PO-E-0260 |  | Main program system & controller | 5d | 2026-03-24 A | 2026-03-24 A | DAM3-E-MA-E-0260 | 100% | 2026-06-23 | 2026-06-28 |  |  |  | 04 | 05 | 01 | 01 |
| DAM3-E-PO-E-0270 |  | PLC controller | 5d | 2026-03-24 A | 2026-03-24 A | DAM3-E-MA-E-0270 | 100% | 2026-06-23 | 2026-06-28 |  |  |  | 04 | 05 | 01 | 01 |
| DAM3-E-PO-E-190 |  | Lighting panel board | 5d | 2026-03-24 A | 2026-03-24 A | DAM3-E-MA-E-190, DAM3-E-MA-E-190 FF, DAM3-P-PO-E-190 | 100% | 2026-06-29 | 2026-07-04 | Purchaser [16 h] |  |  | 04 | 05 | 01 | 01 |
| DAM3-E-PO-E-200 |  | PP-AC panel | 5d | 2026-03-24 A | 2026-03-24 A | DAM3-E-MA-E-200, DAM3-E-MA-E-200 FF, DAM3-E-PO-E-190 | 100% | 2026-07-05 | 2026-07-09 | Purchaser [16 h] |  |  | 04 | 05 | 01 | 01 |
| DAM3-P-PO-E-190 |  | Main distribution board (MDB) | 5d | 2026-03-24 A | 2026-03-24 A | DAM3-E-MA-E-0020 | 100% | 2026-06-23 | 2026-06-28 | Purchaser [16 h] |  |  | 04 | 05 | 01 | 01 |
| DAM3-P-PO-E-200 |  | Suspended High Bay LED lights | 5d | 2026-03-24 A | 2026-03-24 A | DAM3-E-MA-E-0060, DAM3-E-PO-E-200, DAM3-E-SS-C-890, DAM3-E-SS-A-910, DAM3-E-SS-M-660, DAM3-E-SS-E-990, DAM3-E-SS-EX-760, DAM3-E-SA-C-880, DAM3-E-SA-C-870, DAM3-E-SA-C-870 FF | 100% | 2026-07-11 | 2026-07-15 | Purchaser [16 h] |  |  | 04 | 05 | 01 | 01 |
| DAM3-P-PO-E-210 |  | Flood lights | 5d | 2026-03-24 A | 2026-03-24 A | DAM3-E-MA-E-0070, DAM3-P-PO-E-200, DAM3-E-SS-R-960, DAM3-E-SS-R-960 FF, DAM3-C-B10-S-104 | 100% | 2026-07-16 | 2026-07-21 | Purchaser [16 h] |  |  | 04 | 05 | 01 | 01 |
| DAM3-P-PO-E-220 |  | Recessed mounted LED downlight | 5d | 2026-03-24 A | 2026-03-24 A | DAM3-E-MA-E-0080, DAM3-P-PO-E-210 | 100% | 2026-07-22 | 2026-07-27 | Purchaser [16 h] |  |  | 04 | 05 | 01 | 01 |
| DAM3-P-PO-E-230 |  | LED Emergency Lights wall mounted | 5d | 2026-03-24 A | 2026-03-24 A | DAM3-E-MA-E-0090, DAM3-P-PO-E-220 | 100% | 2026-07-28 | 2026-08-02 | Purchaser [16 h] |  |  | 04 | 05 | 01 | 01 |
| DAM3-P-PO-E-240 |  | LED Emergency Exit Light | 5d | 2026-03-24 A | 2026-03-24 A | DAM3-E-MA-E-0100, DAM3-P-PO-E-230 | 100% | 2026-08-03 | 2026-08-08 | Purchaser [16 h] |  |  | 04 | 05 | 01 | 01 |
| DAM3-P-PO-E-250 |  | Fire alarm system | 5d | 2026-03-24 A | 2026-03-24 A | DAM3-E-MA-E-0130, DAM3-P-PO-E-240 | 100% | 2026-08-09 | 2026-08-13 | Purchaser [16 h] |  |  | 04 | 05 | 01 | 01 |
| DAM3-P-PO-E-260 |  | Street Lighting poles | 5d | 2026-03-24 A | 2026-03-24 A | DAM3-E-MA-E-0170, DAM3-P-PO-E-250 | 100% | 2026-08-15 | 2026-08-19 | Purchaser [16 h] |  |  | 04 | 05 | 01 | 01 |
| DAM3-P-PO-E-270 |  | Distribution board for pump room | 5d | 2026-03-24 A | 2026-03-24 A | DAM3-E-MA-E-0180, DAM3-P-PO-E-260 | 100% | 2026-08-20 | 2026-08-25 | Purchaser [80 h] |  |  | 04 | 05 | 01 | 01 |
| DAM3-P-PO-E-280 |  | Surface mounted lights | 5d | 2026-03-24 A | 2026-03-24 A | DAM3-E-MA-E-0190, DAM3-P-PO-E-270 | 100% | 2026-08-26 | 2026-08-31 | Purchaser [80 h] |  |  | 04 | 05 | 01 | 01 |

| ID | WBS | Activity | Duration | Start | Finish | Predecessors | Complete | Planned start | Planned finish | Resources | Cost | Actual cost | Phasing Code Category | Discipline | Procurement Lead Category | Procurement Stages |
| --- | --- | --- | --- | --- | --- | --- | --- | --- | --- | --- | --- | --- | --- | --- | --- | --- |
|  | 2 | **MANUFACTURING** |  | 2026-04-01 | 2026-09-27 |  |  |  |  |  |  |  |  |  |  |  |
| DAM3-P-MF-E-190 |  | Main distribution board (MDB) | 90d | 2026-04-01 A | 2026-08-22 A | DAM3-P-PO-E-190 | 100% | 2026-04-01 | 2026-07-18 | Loading workers [32 h] |  |  | 04 | 05 | 01 | 02 |
| DAM3-E-MF-E-190 |  | Lighting panel board | 90d | 2026-04-07 A | 2026-09-20 A | DAM3-E-PO-E-190 | 100% | 2026-04-07 | 2026-07-23 | Purchaser [32 h] |  |  | 04 | 05 | 01 | 02 |
| DAM3-E-MF-E-200 |  | PP-AC panel | 90d | 2026-04-13 A | 2026-09-20 A | DAM3-E-PO-E-200 | 100% | 2026-04-13 | 2026-07-29 | Purchaser [32 h] |  |  | 04 | 05 | 01 | 02 |
| DAM3-E-MF-E-0240 |  | Access control system | 150d | 2026-04-16 A | 2026-09-20 A | DAM3-E-PO-E-0240 | 100% | 2026-04-16 | 2026-10-13 |  |  |  | 04 | 05 | 01 | 02 |
| DAM3-P-MF-E-200 |  | Suspended High Bay LED lights | 90d | 2026-04-20 A | 2026-08-27 A | DAM3-P-PO-E-200 | 100% | 2026-04-20 | 2026-08-06 | Loading workers [32 h] |  |  | 04 | 05 | 01 | 02 |
| DAM3-E-MF-E-0230 |  | CCTV System | 120d | 2026-04-25 A | 2026-09-20 A | DAM3-E-PO-E-0230 | 100% | 2026-04-25 | 2026-09-15 |  |  |  | 04 | 05 | 01 | 02 |
| DAM3-E-MF-E-0250 |  | Solar system | 150d | 2026-04-25 A | 2026-09-20 A | DAM3-E-PO-E-0250 | 100% | 2026-04-25 | 2026-10-21 |  |  |  | 04 | 05 | 01 | 02 |
| DAM3-P-MF-E-210 |  | Flood lights | 90d | 2026-04-28 A | 2026-09-27 A | DAM3-P-PO-E-210, DAM3-E-SS-A-960, DAM3-E-SS-M-710, DAM3-E-SS-E-1040, DAM3-E-SS-EX-840, DAM3-E-SA-A-950, DAM3-E-SA-A-940, DAM3-E-SA-M-700, DAM3-E-SA-M-690, DAM3-E-SA-M-680, DAM3-E-SA-M-670, DAM3-E-SA-E-1030, DAM3-E-SA-E-1020, DAM3-E-SA-E-1010, DAM3-E-SA-E-1000, DAM3-E-SA-E-990, DAM3-E-SA-R-960 | 100% | 2026-04-28 | 2026-08-15 | Loading workers [80 h] |  |  | 04 | 05 | 01 | 02 |
| DAM3-E-MF-E-0260 |  | Main program system & controller | 155d | 2026-04-29 A | 2026-09-20 A | DAM3-E-PO-E-0260 | 100% | 2026-04-29 | 2026-11-01 |  |  |  | 04 | 05 | 01 | 02 |
| DAM3-E-MF-E-0270 |  | PLC controller | 160d | 2026-05-02 A | 2026-09-20 A | DAM3-E-PO-E-0270 | 100% | 2026-05-02 | 2026-11-09 |  |  |  | 04 | 05 | 01 | 02 |
| DAM3-P-MF-E-220 |  | Recessed mounted LED downlight | 90d | 2026-05-04 A | 2026-09-27 A | DAM3-P-PO-E-220 | 100% | 2026-05-04 | 2026-08-20 | Loading workers [80 h] |  |  | 04 | 05 | 01 | 02 |
| DAM3-P-MF-E-230 |  | LED Emergency Lights wall mounted | 90d | 2026-05-10 A | 2026-09-27 A | DAM3-P-PO-E-230 | 100% | 2026-05-10 | 2026-08-26 | Loading workers [80 h] |  |  | 04 | 05 | 01 | 02 |
| DAM3-P-MF-E-240 |  | LED Emergency Exit Light | 90d | 2026-05-16 A | 2026-09-27 A | DAM3-P-PO-E-240 | 100% | 2026-05-16 | 2026-09-01 | Loading workers [80 h] |  |  | 04 | 05 | 01 | 02 |
| DAM3-P-MF-E-250 |  | Fire alarm system | 130d | 2026-05-21 A | 2026-09-20 A | DAM3-P-PO-E-250 | 100% | 2026-05-21 | 2026-10-25 | Loading workers [80 h] |  |  | 04 | 05 | 01 | 02 |
| DAM3-P-MF-E-260 |  | Street Lighting poles | 90d | 2026-05-31 A | 2026-06-21 A | DAM3-P-PO-E-260 | 100% | 2026-05-31 | 2026-09-13 | Loading workers [1440 h] |  |  | 04 | 05 | 01 | 02 |
| DAM3-P-MF-E-270 |  | Distribution board for pump room | 90d | 2026-06-06 A | 2026-06-21 A | DAM3-P-PO-E-270 | 100% | 2026-06-06 | 2026-09-19 | Loading workers [1440 h] |  |  | 04 | 05 | 01 | 02 |
| DAM3-P-MF-E-280 |  | Surface mounted lights | 90d | 2026-06-11 A | 2026-06-21 A | DAM3-P-PO-E-280 | 100% | 2026-06-11 | 2026-09-26 | Loading workers [1440 h] |  |  | 04 | 05 | 01 | 02 |
|  | 3 | **CUSTOM CLEARANCE** |  |  |  |  |  |  |  |  |  |  |  |  |  |  |
|  | 4 | **DELIVERY TO SITE** |  | 2026-08-24 | 2026-09-21 |  |  |  |  |  |  |  |  |  |  |  |
| DAM3-P-DL-E-190 |  | Main distribution board (MDB) | 7d | 2026-08-24 A | 2026-08-24 A | DAM3-P-MF-E-190 | 100% | 2026-09-03 | 2026-09-10 | Unloading workers [112 h]; Construction Cost [106627] | 106,626.87 | 106,626.87 | 04 | 05 | 01 | 03 |
| DAM3-P-DL-E-200 |  | Suspended High Bay LED lights | 7d | 2026-08-29 A | 2026-08-29 A | DAM3-P-MF-E-200 | 100% | 2026-09-08 | 2026-09-15 | Unloading workers [112 h]; Construction Cost [99586.8] | 99,586.79 | 99,586.79 | 04 | 05 | 01 | 03 |
| DAM3-P-DL-E-210 |  | Flood lights | 7d | 2026-08-29 A | 2026-08-29 A | DAM3-P-MF-E-210 | 100% | 2026-09-17 | 2026-09-26 | Unloading workers [112 h]; Construction Cost [15121.2] | 15,121.21 | 15,121.21 | 04 | 05 | 01 | 03 |
| DAM3-P-DL-E-220 |  | Recessed mounted LED downlight | 7d | 2026-08-29 A | 2026-08-29 A | DAM3-P-MF-E-220 | 100% | 2026-09-08 | 2026-09-15 | Unloading workers [112 h]; Construction Cost [133874] | 133,874.22 | 133,874.22 | 04 | 05 | 01 | 03 |
| DAM3-P-DL-E-230 |  | LED Emergency Lights wall mounted | 7d | 2026-08-29 A | 2026-08-29 A | DAM3-P-MF-E-230 | 100% | 2026-09-17 | 2026-09-26 | Unloading workers [720 h]; Construction Cost [27627.1] | 27,627.07 | 27,627.07 | 04 | 05 | 01 | 03 |
| DAM3-P-DL-E-240 |  | LED Emergency Exit Light | 7d | 2026-08-29 A | 2026-08-29 A | DAM3-P-MF-E-240 | 100% | 2026-09-24 | 2026-10-03 | Unloading workers [720 h]; Construction Cost [7634.17] | 7,634.17 | 7,634.17 | 04 | 05 | 01 | 03 |
| DAM3-P-DL-E-280 |  | Surface mounted lights | 7d | 2026-08-29 A | 2026-08-29 A | DAM3-P-MF-E-280 | 100% | 2026-09-05 | 2026-09-12 | Unloading workers [720 h]; Construction Cost [73792.2] | 73,792.16 | 73,792.16 | 04 | 05 | 01 | 03 |
| DAM3-P-DL-E-1900 |  | Lighting panel board | 7d | 2026-09-01 A | 2026-09-21 A | DAM3-E-MF-E-190 | 100% | 2026-09-12 | 2026-09-19 | Purchaser [112 h]; Construction Cost [60429.5] | 60,429.51 | 60,429.51 | 04 | 05 | 01 | 03 |
| DAM3-P-DL-E-2000 |  | PP-AC panel | 7d | 2026-09-01 A | 2026-09-21 A | DAM3-E-MF-E-200, DAM3-C-B6-SS-1060 | 100% | 2026-09-28 | 2026-10-05 | Purchaser [112 h]; Construction Cost [71084.6] | 71,084.56 | 71,084.56 | 04 | 05 | 01 | 03 |
| DAM3-P-DL-E-250 |  | Fire alarm system | 7d | 2026-09-02 A | 2026-09-21 A | DAM3-P-MF-E-250 | 100% | 2026-09-17 | 2026-09-26 | Unloading workers [1440 h]; Construction Cost [279467] | 279,467.41 | 279,467.41 | 04 | 05 | 01 | 03 |
| DAM3-P-DL-E-0230 |  | CCTV System | 7d | 2026-09-06 A | 2026-09-21 A | DAM3-E-MF-E-0230 | 100% | 2026-09-20 | 2026-09-28 | Construction Cost [250699]; Unloading workers [720 h] | 250,698.98 | 250,698.98 | 04 | 05 | 01 | 03 |
| DAM3-P-DL-E-0260 |  | Main program system & controller | 7d | 2026-09-06 A | 2026-09-21 A | DAM3-P-DL-E-0250, DAM3-E-MF-E-0260 | 100% | 2026-10-03 | 2026-10-10 | Construction Cost [83856.8]; Unloading workers [112 h] | 83,856.79 | 83,856.79 | 04 | 05 | 01 | 03 |
| DAM3-P-DL-E-0270 |  | PLC controller | 7d | 2026-09-07 A | 2026-09-21 A | DAM3-P-DL-E-0260, DAM3-E-MF-E-0270 | 100% | 2026-10-04 | 2026-10-12 | Construction Cost [56576.6]; Unloading workers [112 h] | 56,576.55 | 56,576.55 | 04 | 05 | 01 | 03 |
| DAM3-P-DL-E-0250 |  | Solar system | 7d | 2026-09-09 A | 2026-09-21 A | DAM3-E-MF-E-0250 | 100% | 2026-09-28 | 2026-10-05 | Construction Cost [831629]; Unloading workers [112 h] | 831,628.6 | 831,628.6 | 04 | 05 | 01 | 03 |
| DAM3-P-DL-E-0240 |  | Access control system | 7d | 2026-09-19 A | 2026-09-21 A | DAM3-E-MF-E-0240 | 100% | 2026-09-28 | 2026-10-06 | Construction Cost [90682.2]; Unloading workers [112 h] | 90,682.24 | 90,682.24 | 04 | 05 | 01 | 03 |
| DAM3-P-DL-E-260 |  | Street Lighting poles | 7d | 2026-09-19 A | 2026-09-21 A | DAM3-P-MF-E-260 | 100% | 2026-09-19 | 2026-09-27 | Unloading workers [720 h]; Construction Cost [70168.8] | 70,168.75 | 70,168.75 | 04 | 05 | 01 | 03 |
| DAM3-P-DL-E-270 |  | Distribution board for pump room | 7d | 2026-09-19 A | 2026-09-20 A | DAM3-P-MF-E-270 | 100% | 2026-09-19 | 2026-09-27 | Unloading workers [720 h]; Construction Cost [73351.4] | 73,351.39 | 73,351.39 | 04 | 05 | 01 | 03 |

| ID | WBS | Activity | Duration | Start | Finish | Predecessors | Complete | Planned start | Planned finish | Resources | Phasing Code Category | Discipline | Procurement Lead Category | Procurement Stages |
| --- | --- | --- | --- | --- | --- | --- | --- | --- | --- | --- | --- | --- | --- | --- |
|  | 5 | **STAGING TIME** |  | 2026-08-24 | 2026-09-21 |  |  |  |  |  |  |  |  |  |
| DAM3-P-ST-E-190 |  | Main distribution board (MDB) | 7d | 2026-08-24 A | 2026-08-24 A | DAM3-P-DL-E-190 | 100% | 2026-09-12 | 2026-09-20 |  | 04 | 05 | 01 | 04 |
| DAM3-P-ST-E-200 |  | Suspended High Bay LED lights | 7d | 2026-08-29 A | 2026-08-29 A | DAM3-P-DL-E-200, DAM3-E-ST-E-190, DAM3-P-ST-E-190 | 100% | 2026-09-29 | 2026-10-06 |  | 04 | 05 | 01 | 04 |
| DAM3-P-ST-E-210 |  | Flood lights | 7d | 2026-08-29 A | 2026-08-29 A | DAM3-P-DL-E-210, DAM3-E-ST-E-200 | 100% | 2026-10-07 | 2026-10-15 |  | 04 | 05 | 01 | 04 |
| DAM3-P-ST-E-220 |  | Recessed mounted LED downlight | 7d | 2026-08-29 A | 2026-08-29 A | DAM3-P-DL-E-220 | 100% | 2026-09-12 | 2026-09-20 |  | 04 | 05 | 01 | 04 |
| DAM3-P-ST-E-230 |  | LED Emergency Lights wall mounted | 7d | 2026-08-29 A | 2026-08-29 A | DAM3-P-DL-E-230 | 100% | 2026-09-24 | 2026-10-03 |  | 04 | 05 | 01 | 04 |
| DAM3-P-ST-E-240 |  | LED Emergency Exit Light | 7d | 2026-08-29 A | 2026-08-29 A | DAM3-P-DL-E-240, DAM3-P-ST-E-220 | 100% | 2026-10-03 | 2026-10-11 |  | 04 | 05 | 01 | 04 |
| DAM3-P-ST-E-280 |  | Surface mounted lights | 7d | 2026-08-29 A | 2026-08-29 A | DAM3-P-DL-E-280, DAM3-P-ST-E-260 | 100% | 2026-09-21 | 2026-09-29 |  | 04 | 05 | 01 | 04 |
| DAM3-E-ST-E-190 |  | Lighting panel board | 7d | 2026-09-01 A | 2026-09-21 A | DAM3-P-DL-E-1900 | 100% | 2026-09-26 | 2026-10-04 |  | 04 | 05 | 01 | 04 |
| DAM3-E-ST-E-200 |  | PP-AC panel | 7d | 2026-09-01 A | 2026-09-21 A | DAM3-P-DL-E-2000 | 100% | 2026-09-29 | 2026-10-07 |  | 04 | 05 | 01 | 04 |
| DAM3-P-ST-E-250 |  | Fire alarm system | 7d | 2026-09-02 A | 2026-09-21 A | DAM3-P-DL-E-250 | 100% | 2026-09-22 | 2026-10-01 |  | 04 | 05 | 01 | 04 |
| DAM3-E-ST-E-0230 |  | CCTV System | 7d | 2026-09-06 A | 2026-09-21 A | DAM3-P-DL-E-0230 | 100% | 2026-09-29 | 2026-10-07 |  | 04 | 05 | 01 | 04 |
| DAM3-E-ST-E-0260 |  | Main program system & controller | 7d | 2026-09-06 A | 2026-09-21 A | DAM3-E-ST-E-0250, DAM3-P-DL-E-0260 | 100% | 2026-10-11 | 2026-10-19 |  | 04 | 05 | 01 | 04 |
| DAM3-E-ST-E-0270 |  | PLC controller | 7d | 2026-09-07 A | 2026-09-21 A | DAM3-E-ST-E-0260, DAM3-P-DL-E-0270 | 100% | 2026-10-19 | 2026-10-27 |  | 04 | 05 | 01 | 04 |
| DAM3-E-ST-E-0250 |  | Solar system | 7d | 2026-09-09 A | 2026-09-21 A | DAM3-P-DL-E-0250 | 100% | 2026-10-03 | 2026-10-11 |  | 04 | 05 | 01 | 04 |
| DAM3-E-ST-E-0240 |  | Access control system | 7d | 2026-09-19 A | 2026-09-21 A | DAM3-E-ST-E-0230, DAM3-P-DL-E-0240 | 100% | 2026-10-06 | 2026-10-14 |  | 04 | 05 | 01 | 04 |
| DAM3-P-ST-E-260 |  | Street Lighting poles | 7d | 2026-09-19 A | 2026-09-21 A | DAM3-P-DL-E-260 | 100% | 2026-09-20 | 2026-09-28 |  | 04 | 05 | 01 | 04 |
| DAM3-P-ST-E-270 |  | Distribution board for pump room | 7d | 2026-09-19 A | 2026-09-21 A | DAM3-P-DL-E-270 | 100% | 2026-09-28 | 2026-10-05 |  | 04 | 05 | 01 | 04 |
|  | 2 | **MECHANICAL** |  | 2026-03-01 | 2026-09-20 |  |  |  |  |  |  |  |  |  |
|  | 1 | **PO ISSUE** |  | 2026-03-01 | 2026-03-01 |  |  |  |  |  |  |  |  |  |
| DAM3-P-PO-M-340 |  | Seamless black steel or ERW pipes | 5d | 2026-03-01 A | 2026-03-01 A | DAM3-E-MA-M-0020 | 100% | 2026-06-23 | 2026-06-28 | Purchaser [80 h] | 04 | 04 | 01 | 01 |
| DAM3-P-PO-M-350 |  | Fire hose cabinet | 5d | 2026-03-01 A | 2026-03-01 A | DAM3-E-MA-M-0030, DAM3-P-PO-M-340 | 100% | 2026-06-29 | 2026-07-04 | Purchaser [80 h] | 04 | 04 | 01 | 01 |
| DAM3-P-PO-M-360 |  | Western water closet | 5d | 2026-03-01 A | 2026-03-01 A | DAM3-E-MA-M-0160, DAM3-P-PO-M-350 | 100% | 2026-07-05 | 2026-07-09 | Purchaser [16 h] | 04 | 04 | 01 | 01 |
| DAM3-P-PO-M-370 |  | Wall propeller type exhaust fans | 5d | 2026-03-01 A | 2026-03-01 A | DAM3-E-MA-M-0210, DAM3-P-PO-M-360 | 100% | 2026-07-11 | 2026-07-15 | Purchaser [80 h] | 04 | 04 | 01 | 01 |
| DAM3-P-PO-M-380 |  | Fire pumps | 5d | 2026-03-01 A | 2026-03-01 A | DAM3-E-MA-M-0250, DAM3-P-PO-M-370 | 100% | 2026-07-16 | 2026-07-21 | Purchaser [80 h] | 04 | 04 | 01 | 01 |
| DAM3-P-PO-M-400 |  | Booster pump | 5d | 2026-03-01 A | 2026-03-01 A | DAM3-E-MA-M-0310, DAM3-P-PO-M-380 | 100% | 2026-04-18 | 2026-04-22 | Purchaser [80 h] | 04 | 04 | 01 | 01 |
| DAM3-P-PO-M-410 |  | GRP tank | 5d | 2026-03-01 A | 2026-03-01 A | DAM3-E-MA-M-0320, DAM3-P-PO-M-400 | 100% | 2026-07-22 | 2026-07-27 | Purchaser [80 h] | 04 | 04 | 01 | 01 |

| ID | WBS | Activity | Duration | Start | Finish | Predecessors | Complete | Planned start | Planned finish | Resources | Cost | Actual cost | Phasing Code Category | Discipline | Procurement Lead Category | Procurement Stages |
| --- | --- | --- | --- | --- | --- | --- | --- | --- | --- | --- | --- | --- | --- | --- | --- | --- |
|  | 2 | **MANUFACTURING** |  | 2026-03-02 | 2026-09-19 |  |  |  |  |  |  |  |  |  |  |  |
| DAM3-P-MF-M-340 |  | Seamless black steel or ERW pipes | 120d | 2026-03-02 A | 2026-06-29 A | DAM3-P-PO-M-340 | 100% | 2026-06-25 | 2026-11-12 | Loading workers [240 h] |  |  | 04 | 04 | 01 | 02 |
| DAM3-P-MF-M-350 |  | Fire hose cabinet | 120d | 2026-03-02 A | 2026-09-19 A | DAM3-P-PO-M-350 | 100% | 2026-07-01 | 2026-11-18 | Loading workers [32 h] |  |  | 04 | 04 | 01 | 02 |
| DAM3-P-MF-M-360 |  | Western water closet | 150d | 2026-03-02 A | 2026-09-19 A | DAM3-P-PO-M-360 | 100% | 2026-07-07 | 2026-12-29 | Loading workers [80 h] |  |  | 04 | 04 | 01 | 02 |
| DAM3-P-MF-M-370 |  | Wall propeller type exhaust fans | 100d | 2026-03-02 A | 2026-08-09 A | DAM3-P-PO-M-370 | 100% | 2026-07-13 | 2026-11-07 | Loading workers [480 h] |  |  | 04 | 04 | 01 | 02 |
| DAM3-P-MF-M-380 |  | Fire pumps | 120d | 2026-03-02 A | 2026-09-17 A | DAM3-P-PO-M-380 | 100% | 2026-07-19 | 2026-12-06 | Loading workers [480 h] |  |  | 04 | 04 | 01 | 02 |
| DAM3-P-MF-M-400 |  | Booster pump | 110d | 2026-03-02 A | 2026-09-06 A | DAM3-P-PO-M-400 | 100% | 2026-04-23 | 2026-09-01 | Loading workers [480 h] |  |  | 04 | 04 | 01 | 02 |
| DAM3-P-MF-M-410 |  | GRP tank | 100d | 2026-03-02 A | 2026-08-25 A | DAM3-P-PO-M-410 | 100% | 2026-07-25 | 2026-11-18 | Loading workers [480 h] |  |  | 04 | 04 | 01 | 02 |
|  | 4 | **DELIVERY TO SITE** |  | 2026-07-01 | 2026-09-20 |  |  |  |  |  |  |  |  |  |  |  |
| DAM3-P-DL-M-340 |  | Seamless black steel or ERW pipes | 7d | 2026-07-01 A | 2026-08-11 A | DAM3-P-MF-M-340 | 100% | 2026-07-22 | 2026-07-29 | Unloading workers [112 h]; Construction Cost [237714] | 237,714.11 | 237,714.11 | 04 | 04 | 01 | 03 |
| DAM3-P-DL-M-370 |  | Wall propeller type exhaust fans | 7d | 2026-08-10 A | 2026-09-20 A | DAM3-P-MF-M-370 | 100% | 2026-08-23 | 2026-08-30 | Unloading workers [720 h]; Construction Cost [153776] | 153,775.51 | 153,775.51 | 04 | 04 | 01 | 03 |
| DAM3-P-DL-M-410 |  | GRP tank | 7d | 2026-08-29 A | 2026-08-31 A | DAM3-P-MF-M-410 | 100% | 2026-09-10 | 2026-09-17 | Unloading workers [720 h]; Construction Cost [209853] | 209,853.09 | 209,853.09 | 04 | 04 | 01 | 03 |
| DAM3-P-DL-M-400 |  | Booster pump | 7d | 2026-09-07 A | 2026-09-07 A | DAM3-P-MF-M-400 | 100% | 2026-10-03 | 2026-10-10 | Unloading workers [1440 h]; Construction Cost [12924.5] | 12,924.47 | 12,924.47 | 04 | 04 | 01 | 03 |
| DAM3-P-DL-M-350 |  | Fire hose cabinet | 7d | 2026-09-19 A | 2026-09-20 A | DAM3-P-MF-M-350 | 100% | 2026-10-04 | 2026-10-11 | Unloading workers [112 h]; Construction Cost [49774.4] | 49,774.39 | 49,774.39 | 04 | 04 | 01 | 03 |
| DAM3-P-DL-M-360 |  | Western water closet | 7d | 2026-09-19 A | 2026-09-20 A | DAM3-P-MF-M-360 | 100% | 2026-10-07 | 2026-10-14 | Unloading workers [1440 h]; Construction Cost [65414.6] | 65,414.62 | 65,414.62 | 04 | 04 | 01 | 03 |
| DAM3-P-DL-M-380 |  | Fire pumps | 7d | 2026-09-20 A | 2026-09-20 A | DAM3-P-MF-M-380 | 100% | 2026-10-05 | 2026-10-12 | Unloading workers [1440 h]; Construction Cost [103369] | 103,368.93 | 103,368.93 | 04 | 04 | 01 | 03 |
|  | 5 | **STAGING TIME** |  | 2026-07-01 | 2026-09-20 |  |  |  |  |  |  |  |  |  |  |  |
| DAM3-P-ST-M-340 |  | Seamless black steel or ERW pipes | 7d | 2026-07-01 A | 2026-08-11 A | DAM3-P-DL-M-340 | 100% | 2026-07-08 | 2026-07-16 |  |  |  | 04 | 04 | 01 | 04 |
| DAM3-P-ST-M-370 |  | Wall propeller type exhaust fans | 7d | 2026-08-10 A | 2026-09-20 A | DAM3-P-DL-M-370, DAM3-P-ST-M-350 | 100% | 2026-09-10 | 2026-09-17 |  |  |  | 04 | 04 | 01 | 04 |
| DAM3-P-ST-M-410 |  | GRP tank | 7d | 2026-08-29 A | 2026-08-31 A | DAM3-P-DL-M-410 | 100% | 2026-09-02 | 2026-09-10 |  |  |  | 04 | 04 | 01 | 04 |
| DAM3-P-ST-M-400 |  | Booster pump | 7d | 2026-09-07 A | 2026-09-07 A | DAM3-P-DL-M-400 | 100% | 2026-10-11 | 2026-10-18 |  |  |  | 04 | 04 | 01 | 04 |
| DAM3-P-ST-M-350 |  | Fire hose cabinet | 7d | 2026-09-19 A | 2026-09-20 A | DAM3-P-DL-M-350, DAM3-P-ST-M-340 | 100% | 2026-10-05 | 2026-10-13 |  |  |  | 04 | 04 | 01 | 04 |
| DAM3-P-ST-M-360 |  | Western water closet | 7d | 2026-09-19 A | 2026-09-20 A | DAM3-P-DL-M-360 | 100% | 2026-10-08 | 2026-10-17 |  |  |  | 04 | 04 | 01 | 04 |
| DAM3-P-ST-M-380 |  | Fire pumps | 7d | 2026-09-20 A | 2026-09-20 A | DAM3-P-DL-M-380, DAM3-P-ST-M-410 | 100% | 2026-09-20 | 2026-09-28 |  |  |  | 04 | 04 | 01 | 04 |

| ID | WBS | Activity | Duration | Start | Finish | Predecessors | Complete | Planned start | Planned finish | Resources | Cost | Actual cost | Phasing Code Category | Discipline | Procurement Lead Category | Procurement Stages |
| --- | --- | --- | --- | --- | --- | --- | --- | --- | --- | --- | --- | --- | --- | --- | --- | --- |
|  | 1 | **SHORT LEAD MATERIALS** |  | 2026-01-14 | 2026-09-21 |  |  |  |  |  |  |  |  |  |  |  |
|  | 6 | **STRUCTURAL** |  | 2026-01-20 | 2026-04-29 |  |  |  |  |  |  |  |  |  |  |  |
|  | 1 | **PO ISSUE** |  | 2026-01-20 | 2026-03-25 |  |  |  |  |  |  |  |  |  |  |  |
| DAM3-P-PO-C-60 |  | Concrete mix | 2d | 2026-01-20 A | 2026-01-20 A | DAM3-E-MA-C-0020 | 100% | 2026-02-25 | 2026-02-28 | Purchaser [32 h] |  |  | 04 | 01 | 02 | 01 |
| DAM3-P-PO-C-90 |  | Rebar | 2d | 2026-02-01 A | 2026-02-01 A | DAM3-E-MA-C-0050 | 100% | 2026-03-05 | 2026-03-07 | Purchaser [32 h] |  |  | 04 | 01 | 02 | 01 |
| DAM3-P-PO-C-70 |  | Polyethylene sheet | 2d | 2026-03-01 A | 2026-03-01 A | DAM3-E-MA-C-0030 | 100% | 2026-03-11 | 2026-03-12 | Purchaser [32 h] |  |  | 04 | 01 | 02 | 01 |
| DAM3-P-PO-C-80 |  | Bitumen paint | 2d | 2026-03-09 A | 2026-03-09 A | DAM3-E-MA-C-0040 | 100% | 2026-03-31 | 2026-04-01 | Purchaser [32 h] |  |  | 04 | 01 | 02 | 01 |
| DAM3-P-PO-C-50 |  | Anti termite | 2d | 2026-03-25 A | 2026-03-25 A | DAM3-E-MA-C-0010 | 100% | 2026-03-31 | 2026-04-02 | Purchaser [32 h] |  |  | 04 | 01 | 02 | 01 |
|  | 4 | **MANUFACTURING** |  | 2026-01-21 | 2026-04-07 |  |  |  |  |  |  |  |  |  |  |  |
| DAM3-P-MF-C-60 |  | Concrete mix | 17d | 2026-01-21 A | 2026-02-01 A | DAM3-P-PO-C-60 | 100% | 2026-03-01 | 2026-03-23 | Loading workers [32 h] |  |  | 04 | 01 | 02 | 02 |
| DAM3-P-MF-C-90 |  | Rebar | 7d | 2026-02-02 A | 2026-02-15 A | DAM3-P-PO-C-90 | 100% | 2026-03-08 | 2026-03-15 | Loading workers [32 h] |  |  | 04 | 01 | 02 | 02 |
| DAM3-P-MF-C-70 |  | Polyethylene sheet | 10d | 2026-03-02 A | 2026-03-10 A | DAM3-P-PO-C-70 SS | 100% | 2026-03-11 | 2026-03-25 | Loading workers [32 h] |  |  | 04 | 01 | 02 | 02 |
| DAM3-P-MF-C-80 |  | Bitumen paint | 10d | 2026-03-10 A | 2026-04-07 A | DAM3-P-PO-C-80 | 100% | 2026-04-02 | 2026-04-13 | Loading workers [32 h] |  |  | 04 | 01 | 02 | 02 |
| DAM3-P-MF-C-50 |  | Anti termite | 12d | 2026-03-26 A | 2026-04-07 A | DAM3-P-PO-C-50 | 100% | 2026-04-02 | 2026-04-16 | Loading workers [32 h] |  |  | 04 | 01 | 02 | 02 |
|  | 2 | **DELIVERY** |  | 2026-03-12 | 2026-04-29 |  |  |  |  |  |  |  |  |  |  |  |
| DAM3-P-DL-C-50 |  | Anti termite | 2d | 2026-03-12 A | 2026-04-29 A | DAM3-P-MF-C-50 | 100% | 2026-03-24 | 2026-03-25 | Unloading workers [32 h]; Construction Cost [130310] | 130,309.59 | 130,309.59 | 04 | 01 | 02 | 03 |
| DAM3-P-DL-C-60 |  | Concrete mix -1 | 2d | 2026-03-12 A | 2026-04-14 A | DAM3-P-MF-C-60 | 100% | 2026-03-24 | 2026-03-25 | Unloading workers [16 h]; Construction Cost [196863] | 196,863.16 | 196,863.16 | 04 | 01 | 02 | 03 |
| DAM3-P-DL-C-70 |  | Polyethylene sheet | 2d | 2026-03-12 A | 2026-04-29 A | DAM3-P-MF-C-70 | 100% | 2026-03-26 | 2026-03-28 | Unloading workers [32 h]; Construction Cost [86906.6] | 86,906.55 | 86,906.55 | 04 | 01 | 02 | 03 |
| DAM3-P-DL-C-80 |  | Bitumen paint | 2d | 2026-03-31 A | 2026-04-29 A | DAM3-P-MF-C-80 | 100% | 2026-04-14 | 2026-04-15 | Unloading workers [32 h]; Construction Cost [192961] | 192,960.68 | 192,960.68 | 04 | 01 | 02 | 03 |
| DAM3-P-DL-C-90 |  | Rebar-1 | 2d | 2026-03-31 A | 2026-04-29 A | DAM3-P-MF-C-90 | 100% | 2026-03-16 | 2026-03-21 | Unloading workers [32 h]; Construction Cost [218896] | 218,896.43 | 218,896.43 | 04 | 01 | 02 | 03 |
| DAM3-P-DL-C-100 |  | Concrete mix -2 | 2d | 2026-04-16 A | 2026-04-29 A | DAM3-P-DL-C-60 FS+14d, DAM3-P-ST-C-90, DAM3-C-B5-S-1257 | 100% | 2026-05-23 | 2026-05-24 | Unloading workers [32 h]; Construction Cost [740741] | 740,740.74 | 740,740.74 | 04 | 01 | 02 | 03 |
| DAM3-P-DL-C-110 |  | Concrete mix -3 | 2d | 2026-04-16 A | 2026-04-29 A | DAM3-P-DL-C-100, DAM3-E-PO-A-1760 | 100% | 2026-05-25 | 2026-05-30 | Unloading workers [32 h]; Construction Cost [740741] | 740,740.74 | 740,740.74 | 04 | 01 | 02 | 03 |
| DAM3-P-DL-C-120 |  | Rebar-2 | 2d | 2026-04-16 A | 2026-04-29 A | DAM3-P-DL-C-90, DAM3-C-B5-S-1257 | 100% | 2026-05-23 | 2026-05-24 | Unloading workers [32 h]; Construction Cost [450000] | 450,000 | 450,000 | 04 | 01 | 02 | 03 |
| DAM3-P-DL-C-130 |  | Rebar-3 | 2d | 2026-04-16 A | 2026-04-29 A | DAM3-P-DL-C-120 | 100% | 2026-05-25 | 2026-05-30 | Unloading workers [32 h]; Construction Cost [450000] | 450,000 | 450,000 | 04 | 01 | 02 | 03 |

| ID | WBS | Activity | Duration | Start | Finish | Predecessors | Complete | Planned start | Planned finish | Resources | Phasing Code Category | Discipline | Procurement Lead Category | Procurement Stages |
| --- | --- | --- | --- | --- | --- | --- | --- | --- | --- | --- | --- | --- | --- | --- |
|  | 3 | **STAGING TIME** |  | 2026-03-12 | 2026-04-29 |  |  |  |  |  |  |  |  |  |
| DAM3-P-ST-C-50 |  | Anti termite | 1d | 2026-03-12 A | 2026-04-29 A | DAM3-P-DL-C-50 | 100% | 2026-04-16 | 2026-04-18 |  | 04 | 01 | 02 | 04 |
| DAM3-P-ST-C-60 |  | Concrete mix | 1d | 2026-03-12 A | 2026-04-29 A | DAM3-P-DL-C-60 | 100% | 2026-03-31 | 2026-04-01 |  | 04 | 01 | 02 | 04 |
| DAM3-P-ST-C-70 |  | Polyethylene sheet | 1d | 2026-03-12 A | 2026-04-29 A | DAM3-P-DL-C-70 | 100% | 2026-03-31 | 2026-04-01 |  | 04 | 01 | 02 | 04 |
| DAM3-P-ST-C-80 |  | Bitumen paint | 1d | 2026-03-31 A | 2026-04-29 A | DAM3-P-DL-C-80 | 100% | 2026-04-16 | 2026-04-16 |  | 04 | 01 | 02 | 04 |
| DAM3-P-ST-C-90 |  | Rebar | 1d | 2026-03-31 A | 2026-04-29 A | DAM3-P-DL-C-90 | 100% | 2026-04-07 | 2026-04-08 |  | 04 | 01 | 02 | 04 |
|  | 1 | **ARCHITECTURAL** |  | 2026-01-14 | 2026-09-20 |  |  |  |  |  |  |  |  |  |
|  | 1 | **PO ISSUE** |  | 2026-01-14 | 2026-05-24 |  |  |  |  |  |  |  |  |  |
| DAM3-P-PO-A-210 |  | Steel ladder | 5d | 2026-01-14 A | 2026-01-18 A | DAM3-E-MA-A-0030, DAM3-P-PO-A-200 | 100% | 2026-07-21 | 2026-07-26 | Purchaser [80 h] | 04 | 03 | 02 | 01 |
| DAM3-P-PO-A-220 |  | Steel gratings | 5d | 2026-04-02 A | 2026-04-02 A | DAM3-E-MA-A-0040, DAM3-P-PO-A-210 | 100% | 2026-07-27 | 2026-08-01 | Purchaser [80 h] | 04 | 03 | 02 | 01 |
| DAM3-E-PO-A-1720 |  | Aluminum Composite Panel | 5d | 2026-04-05 A | 2026-04-05 A | DAM3-E-MA-A-1720, DAM3-E-MA-A-1720 FF, DAM3-P-PO-A-330 | 100% | 2026-09-19 | 2026-09-24 | Purchaser [16 h] | 04 | 03 | 02 | 01 |
| DAM3-E-PO-A-1750 |  | Steel fence and gates | 5d | 2026-04-05 A | 2026-04-05 A | DAM3-E-MA-A-1750, DAM3-E-MA-A-1750 FF | 100% | 2026-09-07 | 2026-09-12 | Purchaser [16 h] | 04 | 03 | 02 | 01 |
| DAM3-E-PO-A-1760 |  | Identification sign; ID01 & ID02 | 5d | 2026-04-05 A | 2026-04-05 A | DAM3-E-MA-A-1760, DAM3-E-MA-A-1760 FF, DAM3-E-PO-A-1750 | 100% | 2026-09-13 | 2026-09-17 | Purchaser [16 h] | 04 | 03 | 02 | 01 |
| DAM3-P-PO-A-200 |  | Concrete masonry unit (CMU) | 5d | 2026-04-05 A | 2026-04-05 A | DAM3-E-MA-A-0020 | 100% | 2026-06-16 | 2026-06-21 | Purchaser [80 h] | 04 | 03 | 02 | 01 |
| DAM3-P-PO-A-320 |  | Internl paint | 5d | 2026-04-05 A | 2026-04-05 A | DAM3-E-MA-A-0160, DAM3-P-PO-A-310 | 100% | 2026-09-07 | 2026-09-12 | Purchaser [16 h] | 04 | 03 | 02 | 01 |
| DAM3-P-PO-A-330 |  | Gypsum board | 5d | 2026-04-05 A | 2026-04-05 A | DAM3-E-MA-A-0170, DAM3-P-PO-A-320 | 100% | 2026-09-13 | 2026-09-17 | Purchaser [16 h] | 04 | 03 | 02 | 01 |
| DAM3-P-PO-A-280 |  | Ceramic tiles | 5d | 2026-04-07 A | 2026-04-07 A | DAM3-E-MA-A-0120 | 100% | 2026-06-21 | 2026-06-25 | Purchaser [80 h] | 04 | 03 | 02 | 01 |
| DAM3-P-PO-A-290 |  | Granite strip | 5d | 2026-05-12 A | 2026-05-12 A | DAM3-E-MA-A-0130, DAM3-P-PO-A-280 | 100% | 2026-07-21 | 2026-07-26 | Purchaser [16 h] | 04 | 03 | 02 | 01 |
| DAM3-P-PO-A-230 |  | Steel rails | 5d | 2026-05-24 A | 2026-05-24 A | DAM3-E-MA-A-0050, DAM3-P-PO-A-220 | 100% | 2026-09-01 | 2026-09-06 | Purchaser [16 h] | 04 | 03 | 02 | 01 |
| DAM3-P-PO-A-310 |  | Epoxy paint | 5d | 2026-05-24 A | 2026-05-24 A | DAM3-E-MA-A-0150 | 100% | 2026-07-21 | 2026-07-26 | Purchaser [16 h] | 04 | 03 | 02 | 01 |
|  | 4 | **MANUFACTURING** |  | 2026-01-14 | 2026-09-19 |  |  |  |  |  |  |  |  |  |
| DAM3-P-MF-A-210 |  | Steel ladder | 80d | 2026-01-14 A | 2026-07-22 A | DAM3-P-PO-A-210 | 100% | 2026-06-28 | 2026-09-29 | Loading workers [240 h] | 04 | 03 | 02 | 02 |
| DAM3-E-MF-A-1720 |  | Aluminum Composite Panel | 80d | 2026-04-06 A | 2026-09-19 A | DAM3-E-PO-A-1720 | 100% | 2026-07-15 | 2026-10-17 | Purchaser [40 h] | 04 | 03 | 02 | 02 |
| DAM3-E-MF-A-1750 |  | Steel fence and gates | 80d | 2026-04-06 A | 2026-09-19 A | DAM3-E-PO-A-1750 | 100% | 2026-06-28 | 2026-09-29 | Purchaser [40 h] | 04 | 03 | 02 | 02 |
| DAM3-E-MF-A-1760 |  | Identification sign; ID01 & ID02 | 80d | 2026-04-06 A | 2026-09-19 A | DAM3-E-PO-A-1760 | 100% | 2026-07-04 | 2026-10-05 | Purchaser [40 h] | 04 | 03 | 02 | 02 |
| DAM3-P-MF-A-200 |  | Concrete masonry unit (CMU) | 50d | 2026-04-06 A | 2026-06-08 A | DAM3-P-PO-A-200 | 100% | 2026-06-22 | 2026-08-18 | Loading workers [240 h] | 04 | 03 | 02 | 02 |
| DAM3-P-MF-A-220 |  | Steel gratings | 80d | 2026-04-06 A | 2026-07-02 A | DAM3-P-PO-A-220 | 100% | 2026-07-04 | 2026-10-05 | Loading workers [40 h] | 04 | 03 | 02 | 02 |
| DAM3-P-MF-A-230 |  | Steel rails | 80d | 2026-04-06 A | 2026-07-02 A | DAM3-P-PO-A-230 | 100% | 2026-07-09 | 2026-10-11 | Loading workers [40 h] | 04 | 03 | 02 | 02 |
| DAM3-P-MF-A-280 |  | Ceramic tiles | 80d | 2026-04-06 A | 2026-06-09 A | DAM3-P-PO-A-280 | 100% | 2026-06-27 | 2026-09-28 | Loading workers [40 h] | 04 | 03 | 02 | 02 |
| DAM3-P-MF-A-290 |  | Granite strip | 80d | 2026-04-06 A | 2026-09-19 A | DAM3-P-PO-A-290 | 100% | 2026-06-28 | 2026-09-29 | Loading workers [40 h] | 04 | 03 | 02 | 02 |
| DAM3-P-MF-A-310 |  | Epoxy paint | 80d | 2026-04-06 A | 2026-07-20 A | DAM3-P-PO-A-310 | 100% | 2026-06-28 | 2026-09-29 | Loading workers [40 h] | 04 | 03 | 02 | 02 |
| DAM3-P-MF-A-320 |  | Internl paint | 80d | 2026-04-06 A | 2026-09-19 A | DAM3-P-PO-A-320 | 100% | 2026-07-04 | 2026-10-05 | Loading workers [40 h] | 04 | 03 | 02 | 02 |
| DAM3-P-MF-A-330 |  | Gypsum board | 80d | 2026-04-06 A | 2026-09-19 A | DAM3-P-PO-A-330 | 100% | 2026-07-09 | 2026-10-11 | Loading workers [40 h] | 04 | 03 | 02 | 02 |

| ID | WBS | Activity | Duration | Start | Finish | Predecessors | Complete | Planned start | Planned finish | Resources | Cost | Actual cost | Phasing Code Category | Discipline | Procurement Lead Category | Procurement Stages |
| --- | --- | --- | --- | --- | --- | --- | --- | --- | --- | --- | --- | --- | --- | --- | --- | --- |
|  | 2 | **DELIVERY** |  | 2026-06-10 | 2026-09-20 |  |  |  |  |  |  |  |  |  |  |  |
| DAM3-P-DL-A-200 |  | Concrete masonry unit (CMU) | 7d | 2026-06-10 A | 2026-06-14 A | DAM3-P-MF-A-200 | 100% | 2026-08-19 | 2026-08-26 | Unloading workers [112 h]; Construction Cost [418802] | 418,802.4 | 418,802.4 | 04 | 03 | 02 | 03 |
| DAM3-P-DL-A-280 |  | Ceramic tiles | 7d | 2026-06-11 A | 2026-06-15 A | DAM3-P-MF-A-280 | 100% | 2026-09-29 | 2026-10-06 | Unloading workers [112 h]; Construction Cost [241008] | 241,008.42 | 241,008.42 | 04 | 03 | 02 | 03 |
| DAM3-P-DL-A-220 |  | Steel gratings | 7d | 2026-07-05 A | 2026-07-05 A | DAM3-P-MF-A-220 | 100% | 2026-08-11 | 2026-08-18 | Unloading workers [112 h]; Construction Cost [21196] | 21,196.03 | 21,196.03 | 04 | 03 | 02 | 03 |
| DAM3-P-DL-A-310 |  | Epoxy paint | 7d | 2026-07-23 A | 2026-07-25 A | DAM3-P-MF-A-310 | 100% | 2026-08-04 | 2026-08-11 | Unloading workers [112 h]; Construction Cost [378990] | 378,990.27 | 378,990.27 | 04 | 03 | 02 | 03 |
| DAM3-P-DL-A-210 |  | Steel ladder | 7d | 2026-07-28 A | 2026-07-28 A | DAM3-P-MF-A-210 | 100% | 2026-08-06 | 2026-08-13 | Unloading workers [112 h]; Construction Cost [32307.7] | 32,307.7 | 32,307.7 | 04 | 03 | 02 | 03 |
| DAM3-P-DL-A-230 |  | Steel rails | 7d | 2026-07-28 A | 2026-07-28 A | DAM3-P-MF-A-230 | 100% | 2026-09-16 | 2026-09-24 | Unloading workers [112 h]; Construction Cost [5036.93] | 5,036.93 | 5,036.93 | 04 | 03 | 02 | 03 |
| DAM3-P-DL-A-320 |  | Internl paint | 7d | 2026-09-02 A | 2026-09-20 A | DAM3-P-MF-A-320 | 100% | 2026-09-19 | 2026-09-27 | Unloading workers [112 h]; Construction Cost [145027] | 145,026.96 | 145,026.96 | 04 | 03 | 02 | 03 |
| DAM3-P-DL-A-1720 |  | Aluminum Composite Panel | 7d | 2026-09-07 A | 2026-09-20 A | DAM3-E-MF-A-1720 | 100% | 2026-10-05 | 2026-10-12 | Purchaser [112 h]; Construction Cost [577545] | 577,545.17 | 577,545.17 | 04 | 03 | 02 | 03 |
| DAM3-P-DL-A-330 |  | Gypsum board | 7d | 2026-09-14 A | 2026-09-20 A | DAM3-P-MF-A-330 | 100% | 2026-09-24 | 2026-10-01 | Unloading workers [112 h]; Construction Cost [153646] | 153,646.35 | 153,646.35 | 04 | 03 | 02 | 03 |
| DAM3-P-DL-A-1750 |  | Steel fence and gates | 7d | 2026-09-20 A | 2026-09-20 A | DAM3-E-MF-A-1750 | 100% | 2026-09-26 | 2026-10-03 | Purchaser [112 h]; Construction Cost [23657.4] | 23,657.36 | 23,657.36 | 04 | 03 | 02 | 03 |
| DAM3-P-DL-A-1760 |  | Identification sign; ID01 & ID02 | 7d | 2026-09-20 A | 2026-09-20 A | DAM3-E-MF-A-1760 | 100% | 2026-09-26 | 2026-10-03 | Purchaser [112 h]; Construction Cost [31622.7] | 31,622.71 | 31,622.71 | 04 | 03 | 02 | 03 |
| DAM3-P-DL-A-290 |  | Granite strip | 7d | 2026-09-20 A | 2026-09-20 A | DAM3-P-MF-A-290 | 100% | 2026-09-26 | 2026-10-03 | Unloading workers [112 h]; Construction Cost [2203.66] | 2,203.66 | 2,203.66 | 04 | 03 | 02 | 03 |
|  | 3 | **STAGING TIME** |  | 2026-06-15 | 2026-09-20 |  |  |  |  |  |  |  |  |  |  |  |
| DAM3-P-ST-A-200 |  | Concrete masonry unit (CMU) | 7d | 2026-06-15 A | 2026-06-15 A | DAM3-P-DL-A-200 | 100% | 2026-08-27 | 2026-09-03 |  |  |  | 04 | 03 | 02 | 04 |
| DAM3-P-ST-A-280 |  | Ceramic tiles | 7d | 2026-06-15 A | 2026-06-15 A | DAM3-P-DL-A-280 | 100% | 2026-10-07 | 2026-10-14 |  |  |  | 04 | 03 | 02 | 04 |
| DAM3-P-ST-A-220 |  | Steel gratings | 7d | 2026-07-05 A | 2026-07-05 A | DAM3-P-DL-A-220 | 100% | 2026-08-19 | 2026-08-26 |  |  |  | 04 | 03 | 02 | 04 |
| DAM3-P-ST-A-310 |  | Epoxy paint | 7d | 2026-07-23 A | 2026-07-25 A | DAM3-P-DL-A-310 | 100% | 2026-08-12 | 2026-08-19 |  |  |  | 04 | 03 | 02 | 04 |
| DAM3-P-ST-A-210 |  | Steel ladder | 7d | 2026-07-28 A | 2026-07-28 A | DAM3-P-DL-A-210, DAM3-P-ST-A-200 | 100% | 2026-08-15 | 2026-08-22 |  |  |  | 04 | 03 | 02 | 04 |
| DAM3-P-ST-A-230 |  | Steel rails | 7d | 2026-07-28 A | 2026-07-28 A | DAM3-P-DL-A-230 | 100% | 2026-09-26 | 2026-10-03 |  |  |  | 04 | 03 | 02 | 04 |
| DAM3-P-ST-A-320 |  | Internl paint | 7d | 2026-09-02 A | 2026-09-20 A | DAM3-P-DL-A-320 | 100% | 2026-09-28 | 2026-10-05 |  |  |  | 04 | 03 | 02 | 04 |
| DAM3-E-ST-A-1720 |  | Aluminum Composite Panel | 7d | 2026-09-07 A | 2026-09-20 A | DAM3-P-DL-A-1720 | 100% | 2026-09-29 | 2026-10-07 |  |  |  | 04 | 03 | 02 | 04 |
| DAM3-P-ST-A-330 |  | Gypsum board | 7d | 2026-09-14 A | 2026-09-20 A | DAM3-P-DL-A-330, DAM3-P-ST-A-230 | 100% | 2026-10-03 | 2026-10-10 |  |  |  | 04 | 03 | 02 | 04 |
| DAM3-E-ST-A-1750 |  | Steel fence and gates | 7d | 2026-09-20 A | 2026-09-20 A | DAM3-P-DL-A-1750, DAM3-P-ST-A-280 | 100% | 2026-10-04 | 2026-10-11 |  |  |  | 04 | 03 | 02 | 04 |
| DAM3-E-ST-A-1760 |  | Identification sign; ID01 & ID02 | 7d | 2026-09-20 A | 2026-09-20 A | DAM3-P-DL-A-1760, DAM3-P-ST-A-290, DAM3-P-ST-A-310 | 100% | 2026-10-12 | 2026-10-19 |  |  |  | 04 | 03 | 02 | 04 |
| DAM3-P-ST-A-290 |  | Granite strip | 7d | 2026-09-20 A | 2026-09-20 A | DAM3-P-DL-A-290 | 100% | 2026-10-04 | 2026-10-11 |  |  |  | 04 | 03 | 02 | 04 |

| ID | WBS | Activity | Duration | Start | Finish | Predecessors | Complete | Planned start | Planned finish | Resources | Phasing Code Category | Discipline | Procurement Lead Category | Procurement Stages |
| --- | --- | --- | --- | --- | --- | --- | --- | --- | --- | --- | --- | --- | --- | --- |
|  | 2 | **MECHANICAL** |  | 2026-04-05 | 2026-09-20 |  |  |  |  |  |  |  |  |  |
|  | 1 | **PO ISSUE** |  | 2026-04-05 | 2026-04-26 |  |  |  |  |  |  |  |  |  |
| DAM3-P-PO-M-600 |  | HVAC duct | 5d | 2026-04-05 A | 2026-04-05 A | DAM3-E-MA-M-0220, DAM3-P-PO-M-480 | 100% | 2026-06-22 | 2026-06-27 | Purchaser [80 h] | 04 | 04 | 02 | 01 |
| DAM3-E-PO-M-3410 |  | Water tap | 5d | 2026-04-26 A | 2026-04-26 A | DAM3-E-MA-M-3410, DAM3-E-MA-M-3410 FF | 100% | 2026-06-23 | 2026-06-28 | Purchaser [80 h] | 04 | 04 | 02 | 01 |
| DAM3-P-PO-M-390 |  | Fire fighting valves | 5d | 2026-04-26 A | 2026-04-26 A | DAM3-E-MA-M-0270, DAM3-P-PO-M-590 | 100% | 2026-08-15 | 2026-08-19 | Purchaser [80 h] | 04 | 04 | 02 | 01 |
| DAM3-P-PO-M-420 |  | Water supply valves | 5d | 2026-04-26 A | 2026-04-26 A | DAM3-E-MA-M-0330 | 100% | 2026-06-23 | 2026-06-28 | Purchaser [80 h] | 04 | 04 | 02 | 01 |
| DAM3-P-PO-M-430 |  | U/G HDPE pipes | 5d | 2026-04-26 A | 2026-04-26 A | DAM3-E-MA-M-0010, DAM3-P-PO-M-620 | 100% | 2026-07-11 | 2026-07-15 | Purchaser [16 h] | 04 | 04 | 02 | 01 |
| DAM3-P-PO-M-440 |  | Automatic air release valve | 5d | 2026-04-26 A | 2026-04-26 A | DAM3-E-MA-M-0040, DAM3-P-PO-M-660 | 100% | 2026-07-22 | 2026-07-27 | Purchaser [16 h] | 04 | 04 | 02 | 01 |
| DAM3-P-PO-M-450 |  | OS & Y gate valve | 5d | 2026-04-26 A | 2026-04-26 A | DAM3-E-MA-M-0050, DAM3-P-PO-M-440 | 100% | 2026-07-28 | 2026-08-02 | Purchaser [16 h] | 04 | 04 | 02 | 01 |
| DAM3-P-PO-M-460 |  | Fire alarm check valve | 5d | 2026-04-26 A | 2026-04-26 A | DAM3-E-MA-M-0060, DAM3-P-PO-M-450 | 100% | 2026-08-03 | 2026-08-08 | Purchaser [80 h] | 04 | 04 | 02 | 01 |
| DAM3-P-PO-M-480 |  | PPR pipes | 5d | 2026-04-26 A | 2026-04-26 A | DAM3-E-MA-M-0080 | 100% | 2026-06-23 | 2026-06-28 | Purchaser [80 h] | 04 | 04 | 02 | 01 |
| DAM3-P-PO-M-490 |  | Ball valve | 5d | 2026-04-26 A | 2026-04-26 A | DAM3-E-MA-M-0090 | 100% | 2026-06-23 | 2026-06-28 | Purchaser [16 h] | 04 | 04 | 02 | 01 |
| DAM3-P-PO-M-500 |  | Capped connection | 5d | 2026-04-26 A | 2026-04-26 A | DAM3-E-MA-M-0100, DAM3-P-PO-M-490 | 100% | 2026-06-29 | 2026-07-04 | Purchaser [16 h] | 04 | 04 | 02 | 01 |
| DAM3-P-PO-M-510 |  | UPVC pipes | 5d | 2026-04-26 A | 2026-04-26 A | DAM3-E-MA-M-0110, DAM3-P-PO-M-500 | 100% | 2026-06-11 | 2026-06-16 | Purchaser [16 h] | 04 | 04 | 02 | 01 |
| DAM3-P-PO-M-520 |  | Roof vent caps | 5d | 2026-04-26 A | 2026-04-26 A | DAM3-E-MA-M-0120, DAM3-P-PO-M-510 | 100% | 2026-07-05 | 2026-07-09 | Purchaser [16 h] | 04 | 04 | 02 | 01 |
| DAM3-P-PO-M-530 |  | Floor drain | 5d | 2026-04-26 A | 2026-04-26 A | DAM3-E-MA-M-0130, DAM3-P-PO-M-520 | 100% | 2026-07-11 | 2026-07-15 | Purchaser [80 h] | 04 | 04 | 02 | 01 |
| DAM3-P-PO-M-540 |  | Gully trap | 5d | 2026-04-26 A | 2026-04-26 A | DAM3-E-MA-M-0140, DAM3-P-PO-M-530, DAM3-P-PO-M-570 | 100% | 2026-07-16 | 2026-07-21 | Purchaser [80 h] | 04 | 04 | 02 | 01 |
| DAM3-P-PO-M-550 |  | Electric water heater | 5d | 2026-04-26 A | 2026-04-26 A | DAM3-E-MA-M-0150, DAM3-P-PO-M-540 | 100% | 2026-07-22 | 2026-07-27 | Purchaser [80 h] | 04 | 04 | 02 | 01 |
| DAM3-P-PO-M-560 |  | Bib tap | 5d | 2026-04-26 A | 2026-04-26 A | DAM3-E-MA-M-0170, DAM3-P-PO-M-550 | 100% | 2026-07-28 | 2026-08-02 | Purchaser [80 h] | 04 | 04 | 02 | 01 |
| DAM3-P-PO-M-570 |  | Toilet Fittings | 5d | 2026-04-26 A | 2026-04-26 A | DAM3-E-MA-M-0180 | 100% | 2026-06-23 | 2026-06-28 |  | 04 | 04 | 02 | 01 |
| DAM3-P-PO-M-580 |  | Lavatory / wash basin | 5d | 2026-04-26 A | 2026-04-26 A | DAM3-E-MA-M-0190, DAM3-P-PO-M-560 | 100% | 2026-08-03 | 2026-08-08 | Purchaser [80 h] | 04 | 04 | 02 | 01 |
| DAM3-P-PO-M-590 |  | Inline exhaust fans | 5d | 2026-04-26 A | 2026-04-26 A | DAM3-E-MA-M-0200, DAM3-P-PO-M-580 | 100% | 2026-08-09 | 2026-08-13 | Purchaser [80 h] | 04 | 04 | 02 | 01 |
| DAM3-P-PO-M-610 |  | Flexible duct | 5d | 2026-04-26 A | 2026-04-26 A | DAM3-E-MA-M-0230, DAM3-P-PO-M-600 | 100% | 2026-06-29 | 2026-07-04 | Purchaser [80 h] | 04 | 04 | 02 | 01 |
| DAM3-P-PO-M-620 |  | Exhaust diffuser | 5d | 2026-04-26 A | 2026-04-26 A | DAM3-E-MA-M-0240, DAM3-P-PO-M-610 | 100% | 2026-07-05 | 2026-07-09 | Purchaser [16 h] | 04 | 04 | 02 | 01 |
| DAM3-P-PO-M-660 |  | Warning tapes | 5d | 2026-04-26 A | 2026-04-26 A | DAM3-E-MA-M-0340, DAM3-P-PO-M-430 | 100% | 2026-07-16 | 2026-07-21 | Purchaser [16 h] | 04 | 04 | 02 | 01 |

| ID | WBS | Activity | Duration | Start | Finish | Predecessors | Complete | Planned start | Planned finish | Resources | Phasing Code Category | Discipline | Procurement Lead Category | Procurement Stages |
| --- | --- | --- | --- | --- | --- | --- | --- | --- | --- | --- | --- | --- | --- | --- |
|  | 4 | **MANUFACTURING** |  | 2026-04-06 | 2026-09-19 |  |  |  |  |  |  |  |  |  |
| DAM3-P-MF-M-600 |  | HVAC duct | 80d | 2026-04-06 A | 2026-06-01 A | DAM3-P-PO-M-600 | 100% | 2026-06-28 | 2026-09-29 | Loading workers [240 h] | 04 | 04 | 02 | 02 |
| DAM3-E-MF-M-3410 |  | Water tap | 80d | 2026-04-27 A | 2026-09-19 A | DAM3-E-PO-M-3410 | 100% | 2026-06-28 | 2026-09-29 | Purchaser [80 h] | 04 | 04 | 02 | 02 |
| DAM3-P-MF-M-390 |  | Fire fighting valves | 80d | 2026-04-27 A | 2026-08-09 A | DAM3-P-PO-M-390 | 100% | 2026-08-19 | 2026-11-21 | Loading workers [2880 h] | 04 | 04 | 02 | 02 |
| DAM3-P-MF-M-420 |  | Water supply valves | 80d | 2026-04-27 A | 2026-08-02 A | DAM3-P-PO-M-420 | 100% | 2026-06-28 | 2026-09-29 | Loading workers [80 h] | 04 | 04 | 02 | 02 |
| DAM3-P-MF-M-430 |  | U/G HDPE pipes | 80d | 2026-04-27 A | 2026-08-02 A | DAM3-P-PO-M-430 | 100% | 2026-07-15 | 2026-10-17 | Loading workers [40 h] | 04 | 04 | 02 | 02 |
| DAM3-P-MF-M-440 |  | Automatic air release valve | 80d | 2026-04-27 A | 2026-09-19 A | DAM3-P-PO-M-440 | 100% | 2026-07-27 | 2026-10-28 | Loading workers [40 h] | 04 | 04 | 02 | 02 |
| DAM3-P-MF-M-450 |  | OS & Y gate valve | 80d | 2026-04-27 A | 2026-09-19 A | DAM3-P-PO-M-450 | 100% | 2026-08-02 | 2026-11-03 | Loading workers [80 h] | 04 | 04 | 02 | 02 |
| DAM3-P-MF-M-460 |  | Fire alarm check valve | 80d | 2026-04-27 A | 2026-09-19 A | DAM3-P-PO-M-460 | 100% | 2026-08-08 | 2026-11-09 | Loading workers [80 h] | 04 | 04 | 02 | 02 |
| DAM3-P-MF-M-480 |  | PPR pipes | 80d | 2026-04-27 A | 2026-08-03 A | DAM3-P-PO-M-480 | 100% | 2026-06-28 | 2026-09-29 | Loading workers [240 h] | 04 | 04 | 02 | 02 |
| DAM3-P-MF-M-490 |  | Ball valve | 80d | 2026-04-27 A | 2026-09-19 A | DAM3-P-PO-M-490 | 100% | 2026-06-28 | 2026-09-29 | Loading workers [40 h] | 04 | 04 | 02 | 02 |
| DAM3-P-MF-M-500 |  | Capped connection | 80d | 2026-04-27 A | 2026-09-19 A | DAM3-P-PO-M-500 | 100% | 2026-07-04 | 2026-10-05 | Loading workers [40 h] | 04 | 04 | 02 | 02 |
| DAM3-P-MF-M-510 |  | UPVC pipes | 80d | 2026-04-27 A | 2026-09-19 A | DAM3-P-PO-M-510 | 100% | 2026-06-17 | 2026-09-17 | Loading workers [40 h] | 04 | 04 | 02 | 02 |
| DAM3-P-MF-M-520 |  | Roof vent caps | 80d | 2026-04-27 A | 2026-09-19 A | DAM3-P-PO-M-520 | 100% | 2026-07-09 | 2026-10-11 | Loading workers [80 h] | 04 | 04 | 02 | 02 |
| DAM3-P-MF-M-530 |  | Floor drain | 80d | 2026-04-27 A | 2026-09-19 A | DAM3-P-PO-M-530 | 100% | 2026-07-15 | 2026-10-17 | Loading workers [80 h] | 04 | 04 | 02 | 02 |
| DAM3-P-MF-M-540 |  | Gully trap | 80d | 2026-04-27 A | 2026-09-19 A | DAM3-P-PO-M-540, DAM3-P-MF-M-570 | 100% | 2026-07-21 | 2026-10-22 | Loading workers [80 h] | 04 | 04 | 02 | 02 |
| DAM3-P-MF-M-550 |  | Electric water heater | 120d | 2026-04-27 A | 2026-09-13 A | DAM3-P-PO-M-550 | 100% | 2026-07-27 | 2026-12-14 | Loading workers [80 h] | 04 | 04 | 02 | 02 |
| DAM3-P-MF-M-560 |  | Bib tap | 80d | 2026-04-27 A | 2026-09-19 A | DAM3-P-PO-M-560 | 100% | 2026-08-02 | 2026-11-03 | Loading workers [80 h] | 04 | 04 | 02 | 02 |
| DAM3-P-MF-M-570 |  | Toilet Fittings | 5d | 2026-04-27 A | 2026-09-19 A | DAM3-P-PO-M-570 | 100% | 2026-06-28 | 2026-07-02 |  | 04 | 04 | 02 | 02 |
| DAM3-P-MF-M-580 |  | Lavatory / wash basin | 80d | 2026-04-27 A | 2026-09-19 A | DAM3-P-PO-M-580 | 100% | 2026-08-08 | 2026-11-09 | Loading workers [240 h] | 04 | 04 | 02 | 02 |
| DAM3-P-MF-M-590 |  | Inline exhaust fans | 120d | 2026-04-27 A | 2026-09-19 A | DAM3-P-PO-M-590 | 100% | 2026-08-13 | 2026-12-31 | Loading workers [2880 h] | 04 | 04 | 02 | 02 |
| DAM3-P-MF-M-610 |  | Flexible duct | 80d | 2026-04-27 A | 2026-09-19 A | DAM3-P-PO-M-610 | 100% | 2026-07-04 | 2026-10-05 | Loading workers [40 h] | 04 | 04 | 02 | 02 |
| DAM3-P-MF-M-620 |  | Exhaust diffuser | 80d | 2026-04-27 A | 2026-09-19 A | DAM3-P-PO-M-620 | 100% | 2026-07-09 | 2026-10-11 | Loading workers [40 h] | 04 | 04 | 02 | 02 |
| DAM3-P-MF-M-660 |  | Warning tapes | 80d | 2026-04-27 A | 2026-09-19 A | DAM3-P-PO-M-660 | 100% | 2026-07-21 | 2026-10-22 | Loading workers [40 h] | 04 | 04 | 02 | 02 |

| ID | WBS | Activity | Duration | Start | Finish | Predecessors | Complete | Planned start | Planned finish | Resources | Cost | Actual cost | Phasing Code Category | Discipline | Procurement Lead Category | Procurement Stages |
| --- | --- | --- | --- | --- | --- | --- | --- | --- | --- | --- | --- | --- | --- | --- | --- | --- |
|  | 2 | **DELIVERY** |  | 2026-05-10 | 2026-09-20 |  |  |  |  |  |  |  |  |  |  |  |
| DAM3-P-DL-M-510 |  | UPVC pipes | 7d | 2026-05-10 A | 2026-05-19 A | DAM3-P-MF-M-510 | 100% | 2026-09-19 | 2026-09-27 | Unloading workers [112 h]; Construction Cost [126693] | 126,693.12 | 126,693.12 | 04 | 04 | 02 | 03 |
| DAM3-P-DL-M-600 |  | HVAC duct | 7d | 2026-06-04 A | 2026-06-14 A | DAM3-P-MF-M-600 | 100% | 2026-09-30 | 2026-10-07 | Unloading workers [112 h]; Construction Cost [490860] | 490,860.48 | 490,860.48 | 04 | 04 | 02 | 03 |
| DAM3-P-DL-M-420 |  | Water supply valves | 7d | 2026-07-05 A | 2026-09-15 A | DAM3-P-MF-M-420 | 100% | 2026-09-10 | 2026-09-17 | Unloading workers [112 h]; Construction Cost [3114.56] | 3,114.56 | 3,114.56 | 04 | 04 | 02 | 03 |
| DAM3-P-DL-M-480 |  | PPR pipes | 7d | 2026-07-05 A | 2026-09-15 A | DAM3-P-MF-M-480 | 100% | 2026-07-30 | 2026-08-06 | Unloading workers [112 h]; Construction Cost [76567.9] | 76,567.93 | 76,567.93 | 04 | 04 | 02 | 03 |
| DAM3-P-DL-M-500 |  | Capped connection | 7d | 2026-07-05 A | 2026-09-14 A | DAM3-P-MF-M-500 | 100% | 2026-07-30 | 2026-08-06 | Unloading workers [112 h]; Construction Cost [913.27] | 913.27 | 913.27 | 04 | 04 | 02 | 03 |
| DAM3-P-DL-M-660 |  | Warning tapes | 7d | 2026-07-05 A | 2026-07-05 A | DAM3-P-MF-M-660 | 100% | 2026-07-30 | 2026-08-06 | Unloading workers [112 h]; Construction Cost [14077] | 14,077.01 | 14,077.01 | 04 | 04 | 02 | 03 |
| DAM3-P-DL-M-450 |  | OS & Y gate valve | 7d | 2026-07-15 A | 2026-09-20 A | DAM3-P-MF-M-450 | 100% | 2026-07-30 | 2026-08-06 | Unloading workers [112 h]; Construction Cost [11631.5] | 11,631.51 | 11,631.51 | 04 | 04 | 02 | 03 |
| DAM3-P-DL-M-490 |  | Ball valve | 7d | 2026-07-18 A | 2026-07-18 A | DAM3-P-MF-M-490 | 100% | 2026-07-30 | 2026-08-06 | Unloading workers [112 h]; Construction Cost [14232.2] | 14,232.16 | 14,232.16 | 04 | 04 | 02 | 03 |
| DAM3-P-DL-M-430 |  | U/G HDPE pipes | 7d | 2026-08-01 A | 2026-09-20 A | DAM3-P-MF-M-430 | 100% | 2026-08-11 | 2026-08-18 | Unloading workers [112 h]; Construction Cost [49971.5] | 49,971.54 | 49,971.54 | 04 | 04 | 02 | 03 |
| DAM3-P-DL-M-390 |  | Fire fighting valves | 7d | 2026-08-10 A | 2026-08-10 A | DAM3-P-MF-M-390 | 100% | 2026-08-20 | 2026-08-27 | Unloading workers [720 h]; Construction Cost [8885.58] | 8,885.58 | 8,885.58 | 04 | 04 | 02 | 03 |
| DAM3-P-DL-M-590 |  | Inline exhaust fans | 7d | 2026-09-05 A | 2026-09-20 A | DAM3-P-MF-M-590 | 100% | 2026-09-19 | 2026-09-27 | Unloading workers [1440 h]; Construction Cost [27474.9] | 27,474.92 | 27,474.92 | 04 | 04 | 02 | 03 |
| DAM3-P-DL-M-540 |  | Gully trap | 7d | 2026-09-06 A | 2026-09-20 A | DAM3-P-MF-M-540 | 100% | 2026-09-30 | 2026-10-08 | Unloading workers [112 h]; Construction Cost [15982.6] | 15,982.56 | 15,982.56 | 04 | 04 | 02 | 03 |
| DAM3-P-DL-M-570 |  | Toilet Fittings | 5d | 2026-09-15 A | 2026-09-20 A | DAM3-P-MF-M-570 | 100% | 2026-09-15 | 2026-09-21 | Construction Cost [75460.9] | 75,460.88 | 75,460.88 | 04 | 04 | 02 | 03 |
| DAM3-P-DL-M-530 |  | Floor drain | 7d | 2026-09-16 A | 2026-09-20 A | DAM3-P-MF-M-530 | 100% | 2026-09-27 | 2026-10-04 | Unloading workers [112 h]; Construction Cost [74093.3] | 74,093.27 | 74,093.27 | 04 | 04 | 02 | 03 |
| DAM3-P-DL-M-550 |  | Electric water heater | 7d | 2026-09-16 A | 2026-09-16 A | DAM3-P-MF-M-550 | 100% | 2026-10-01 | 2026-10-08 | Unloading workers [1440 h]; Construction Cost [5974.5] | 5,974.5 | 5,974.5 | 04 | 04 | 02 | 03 |
| DAM3-P-DL-M-580 |  | Lavatory / wash basin | 7d | 2026-09-16 A | 2026-09-20 A | DAM3-P-MF-M-580 | 100% | 2026-09-27 | 2026-10-04 | Unloading workers [720 h]; Construction Cost [70323.4] | 70,323.44 | 70,323.44 | 04 | 04 | 02 | 03 |
| DAM3-P-DL-M-610 |  | Flexible duct | 7d | 2026-09-16 A | 2026-09-20 A | DAM3-P-MF-M-610 | 100% | 2026-09-27 | 2026-10-04 | Unloading workers [112 h]; Construction Cost [69629.7] | 69,629.67 | 69,629.67 | 04 | 04 | 02 | 03 |
| DAM3-P-DL-M-3410 |  | Water tap | 7d | 2026-09-20 A | 2026-09-20 A | DAM3-E-MF-M-3410 | 100% | 2026-09-30 | 2026-10-07 | Purchaser [720 h]; Construction Cost [9437.47] | 9,437.47 | 9,437.47 | 04 | 04 | 02 | 03 |
| DAM3-P-DL-M-440 |  | Automatic air release valve | 7d | 2026-09-20 A | 2026-09-20 A | DAM3-P-MF-M-440 | 100% | 2026-09-21 | 2026-09-29 | Unloading workers [112 h]; Construction Cost [1769.5] | 1,769.5 | 1,769.5 | 04 | 04 | 02 | 03 |
| DAM3-P-DL-M-460 |  | Fire alarm check valve | 7d | 2026-09-20 A | 2026-09-20 A | DAM3-P-MF-M-460 | 100% | 2026-09-30 | 2026-10-07 | Unloading workers [112 h]; Construction Cost [26656.7] | 26,656.72 | 26,656.72 | 04 | 04 | 02 | 03 |
| DAM3-P-DL-M-520 |  | Roof vent caps | 7d | 2026-09-20 A | 2026-09-20 A | DAM3-P-MF-M-520 | 100% | 2026-09-21 | 2026-09-29 | Unloading workers [112 h]; Construction Cost [3044.27] | 3,044.27 | 3,044.27 | 04 | 04 | 02 | 03 |
| DAM3-P-DL-M-560 |  | Bib tap | 7d | 2026-09-20 A | 2026-09-20 A | DAM3-P-MF-M-560 | 100% | 2026-09-21 | 2026-09-29 | Unloading workers [112 h]; Construction Cost [6240.96] | 6,240.96 | 6,240.96 | 04 | 04 | 02 | 03 |
| DAM3-P-DL-M-620 |  | Exhaust diffuser | 7d | 2026-09-20 A | 2026-09-20 A | DAM3-P-MF-M-620 | 100% | 2026-09-21 | 2026-09-29 | Unloading workers [112 h]; Construction Cost [7040] | 7,040 | 7,040 | 04 | 04 | 02 | 03 |

| ID | WBS | Activity | Duration | Start | Finish | Predecessors | Complete | Planned start | Planned finish | Phasing Code Category | Discipline | Procurement Lead Category | Procurement Stages |
| --- | --- | --- | --- | --- | --- | --- | --- | --- | --- | --- | --- | --- | --- |
|  | 3 | **STAGING TIME** |  | 2026-05-10 | 2026-09-20 |  |  |  |  |  |  |  |  |
| DAM3-P-ST-M-510 |  | UPVC pipes | 7d | 2026-05-10 A | 2026-05-19 A | DAM3-P-DL-M-510 | 100% | 2026-07-30 | 2026-08-06 | 04 | 04 | 02 | 04 |
| DAM3-P-ST-M-600 |  | HVAC duct | 7d | 2026-06-04 A | 2026-06-14 A | DAM3-P-DL-M-600 | 100% | 2026-10-08 | 2026-10-15 | 04 | 04 | 02 | 04 |
| DAM3-P-ST-M-420 |  | Water supply valves | 7d | 2026-07-05 A | 2026-09-15 A | DAM3-P-DL-M-420, DAM3-P-ST-M-460, DAM3-P-ST-M-530, DAM3-P-ST-M-450 | 100% | 2026-09-28 | 2026-10-05 | 04 | 04 | 02 | 04 |
| DAM3-P-ST-M-480 |  | PPR pipes | 7d | 2026-07-05 A | 2026-09-15 A | DAM3-P-DL-M-480 | 100% | 2026-08-01 | 2026-08-09 | 04 | 04 | 02 | 04 |
| DAM3-P-ST-M-500 |  | Capped connection | 7d | 2026-07-05 A | 2026-09-14 A | DAM3-P-DL-M-500 | 100% | 2026-08-01 | 2026-08-09 | 04 | 04 | 02 | 04 |
| DAM3-P-ST-M-660 |  | Warning tapes | 7d | 2026-07-05 A | 2026-07-05 A | DAM3-P-DL-M-660 | 100% | 2026-07-30 | 2026-08-06 | 04 | 04 | 02 | 04 |
| DAM3-P-ST-M-450 |  | OS & Y gate valve | 7d | 2026-07-15 A | 2026-09-20 A | DAM3-P-DL-M-450 | 100% | 2026-08-03 | 2026-08-11 | 04 | 04 | 02 | 04 |
| DAM3-P-ST-M-490 |  | Ball valve | 7d | 2026-07-18 A | 2026-07-18 A | DAM3-P-DL-M-490, DAM3-P-ST-M-600 | 100% | 2026-07-30 | 2026-08-06 | 04 | 04 | 02 | 04 |
| DAM3-P-ST-M-430 |  | U/G HDPE pipes | 7d | 2026-08-01 A | 2026-09-20 A | DAM3-P-DL-M-430, DAM3-P-ST-M-610 | 100% | 2026-09-09 | 2026-09-16 | 04 | 04 | 02 | 04 |
| DAM3-P-ST-M-390 |  | Fire fighting valves | 7d | 2026-08-10 A | 2026-08-10 A | DAM3-P-DL-M-390, DAM3-P-ST-M-580, DAM3-E-ST-M-3410, DAM3-P-ST-M-560, DAM3-P-ST-M-420 | 100% | 2026-09-14 | 2026-09-22 | 04 | 04 | 02 | 04 |
| DAM3-P-ST-M-590 |  | Inline exhaust fans | 7d | 2026-09-05 A | 2026-09-20 A | DAM3-P-DL-M-590 | 100% | 2026-10-04 | 2026-10-12 | 04 | 04 | 02 | 04 |
| DAM3-P-ST-M-540 |  | Gully trap | 7d | 2026-09-06 A | 2026-09-20 A | DAM3-P-DL-M-540 | 100% | 2026-10-08 | 2026-10-17 | 04 | 04 | 02 | 04 |
| DAM3-P-ST-M-570 |  | Toilet Fittings | 5d | 2026-09-15 A | 2026-09-20 A | DAM3-P-DL-M-570 | 100% | 2026-09-20 | 2026-09-26 | 04 | 04 | 02 | 04 |
| DAM3-P-ST-M-530 |  | Floor drain | 7d | 2026-09-16 A | 2026-09-20 A | DAM3-P-DL-M-530 | 100% | 2026-10-05 | 2026-10-12 | 04 | 04 | 02 | 04 |
| DAM3-P-ST-M-550 |  | Electric water heater | 7d | 2026-09-16 A | 2026-09-16 A | DAM3-P-DL-M-550 | 100% | 2026-10-10 | 2026-10-17 | 04 | 04 | 02 | 04 |
| DAM3-P-ST-M-580 |  | Lavatory / wash basin | 7d | 2026-09-16 A | 2026-09-20 A | DAM3-P-DL-M-580 | 100% | 2026-10-05 | 2026-10-12 | 04 | 04 | 02 | 04 |
| DAM3-P-ST-M-610 |  | Flexible duct | 7d | 2026-09-16 A | 2026-09-20 A | DAM3-P-DL-M-610 | 100% | 2026-09-29 | 2026-10-07 | 04 | 04 | 02 | 04 |
| DAM3-E-ST-M-3410 |  | Water tap | 7d | 2026-09-20 A | 2026-09-20 A | DAM3-P-DL-M-3410 | 100% | 2026-10-08 | 2026-10-15 | 04 | 04 | 02 | 04 |
| DAM3-P-ST-M-440 |  | Automatic air release valve | 7d | 2026-09-20 A | 2026-09-20 A | DAM3-P-DL-M-440 | 100% | 2026-09-30 | 2026-10-07 | 04 | 04 | 02 | 04 |
| DAM3-P-ST-M-460 |  | Fire alarm check valve | 7d | 2026-09-20 A | 2026-09-20 A | DAM3-P-DL-M-460 | 100% | 2026-10-08 | 2026-10-15 | 04 | 04 | 02 | 04 |
| DAM3-P-ST-M-520 |  | Roof vent caps | 7d | 2026-09-20 A | 2026-09-20 A | DAM3-P-DL-M-520 | 100% | 2026-09-30 | 2026-10-07 | 04 | 04 | 02 | 04 |
| DAM3-P-ST-M-560 |  | Bib tap | 7d | 2026-09-20 A | 2026-09-20 A | DAM3-P-DL-M-560, DAM3-P-ST-M-540 | 100% | 2026-09-30 | 2026-10-07 | 04 | 04 | 02 | 04 |
| DAM3-P-ST-M-620 |  | Exhaust diffuser | 7d | 2026-09-20 A | 2026-09-20 A | DAM3-P-DL-M-620, DAM3-P-ST-M-480 | 100% | 2026-09-30 | 2026-10-07 | 04 | 04 | 02 | 04 |

| ID | WBS | Activity | Duration | Start | Finish | Predecessors | Complete | Planned start | Planned finish | Resources | Cost | Actual cost | Phasing Code Category | Discipline | Procurement Lead Category | Procurement Stages |
| --- | --- | --- | --- | --- | --- | --- | --- | --- | --- | --- | --- | --- | --- | --- | --- | --- |
|  | 3 | **ELECTRICAL** |  | 2026-03-10 | 2026-09-20 |  |  |  |  |  |  |  |  |  |  |  |
|  | 1 | **PO ISSUE** |  | 2026-03-10 | 2026-06-21 |  |  |  |  |  |  |  |  |  |  |  |
| DAM3-P-PO-E-310 |  | PVC conduits | 5d | 2026-03-10 A | 2026-03-10 A | DAM3-E-MA-E-0040 | 100% | 2026-05-06 | 2026-05-11 | Purchaser [80 h] |  |  | 04 | 05 | 02 | 01 |
| DAM3-P-PO-E-340 |  | Grounding system | 5d | 2026-04-26 A | 2026-04-26 A | DAM3-E-MA-E-0120, DAM3-E-PO-E-210 | 100% | 2026-06-02 | 2026-06-07 | Purchaser [16 h] |  |  | 04 | 05 | 02 | 01 |
| DAM3-P-PO-E-370 |  | HDPE ducts | 5d | 2026-04-26 A | 2026-04-26 A | DAM3-E-MA-E-0160, DAM3-P-PO-E-350 | 100% | 2026-06-14 | 2026-06-18 | Purchaser [16 h] |  |  | 04 | 05 | 02 | 01 |
| DAM3-E-PO-E-210 |  | Cable Tray | 5d | 2026-06-21 A | 2026-06-21 A | DAM3-E-MA-E-210, DAM3-P-PO-E-320 | 100% | 2026-06-29 | 2026-07-04 | Purchaser [80 h] |  |  | 04 | 05 | 02 | 01 |
| DAM3-P-PO-E-290 |  | Low Voltage cables | 5d | 2026-06-21 A | 2026-06-21 A | DAM3-E-MA-E-0010, DAM3-P-PO-E-370 | 100% | 2026-07-11 | 2026-07-15 | Purchaser [16 h] |  |  | 04 | 05 | 02 | 01 |
| DAM3-P-PO-E-300 |  | Disconnect switches | 5d | 2026-06-21 A | 2026-06-21 A | DAM3-E-MA-E-0030, DAM3-P-PO-E-290 | 100% | 2026-07-16 | 2026-07-21 | Purchaser [16 h] |  |  | 04 | 05 | 02 | 01 |
| DAM3-P-PO-E-320 |  | Wires | 5d | 2026-06-21 A | 2026-06-21 A | DAM3-E-MA-E-0050, DAM3-P-PO-E-310 | 100% | 2026-06-23 | 2026-06-28 | Purchaser [80 h] |  |  | 04 | 05 | 02 | 01 |
| DAM3-P-PO-E-330 |  | Wall mounted, duplex, telephone and data outlet | 5d | 2026-06-21 A | 2026-06-21 A | DAM3-E-MA-E-0110, DAM3-P-PO-E-300 | 100% | 2026-07-22 | 2026-07-27 | Purchaser [80 h] |  |  | 04 | 05 | 02 | 01 |
| DAM3-P-PO-E-350 |  | Wiring devices | 5d | 2026-06-21 A | 2026-06-21 A | DAM3-E-MA-E-0140, DAM3-P-PO-E-340 | 100% | 2026-07-05 | 2026-07-09 | Purchaser [16 h] |  |  | 04 | 05 | 02 | 01 |
|  | 4 | **MANUFACTURING** |  | 2026-03-11 | 2026-09-16 |  |  |  |  |  |  |  |  |  |  |  |
| DAM3-P-MF-E-310 |  | PVC conduits | 60d | 2026-03-11 A | 2026-05-02 A | DAM3-P-PO-E-310 | 100% | 2026-05-12 | 2026-07-23 | Loading workers [240 h] |  |  | 04 | 05 | 02 | 02 |
| DAM3-P-MF-E-340 |  | Grounding system | 80d | 2026-04-27 A | 2026-05-03 A | DAM3-P-PO-E-340 | 100% | 2026-06-08 | 2026-09-08 | Loading workers [40 h] |  |  | 04 | 05 | 02 | 02 |
| DAM3-P-MF-E-370 |  | HDPE ducts | 80d | 2026-04-27 A | 2026-05-03 A | DAM3-P-PO-E-370 | 100% | 2026-06-20 | 2026-09-20 | Loading workers [40 h] |  |  | 04 | 05 | 02 | 02 |
| DAM3-P-MF-E-320 |  | Wires | 80d | 2026-06-28 A | 2026-09-16 A | DAM3-P-PO-E-320 | 100% | 2026-06-28 | 2026-09-29 | Loading workers [240 h] |  |  | 04 | 05 | 02 | 02 |
| DAM3-E-MF-E-210 |  | Cable Tray | 80d | 2026-07-04 A | 2026-09-16 A | DAM3-E-PO-E-210 | 100% | 2026-07-04 | 2026-10-05 | Purchaser [40 h] |  |  | 04 | 05 | 02 | 02 |
| DAM3-P-MF-E-350 |  | Wiring devices | 80d | 2026-07-09 A | 2026-09-16 A | DAM3-P-PO-E-350 | 100% | 2026-07-09 | 2026-10-11 | Loading workers [40 h] |  |  | 04 | 05 | 02 | 02 |
| DAM3-P-MF-E-290 |  | Low Voltage cables | 80d | 2026-07-15 A | 2026-07-22 A | DAM3-P-PO-E-290 | 100% | 2026-07-15 | 2026-10-17 | Loading workers [40 h] |  |  | 04 | 05 | 02 | 02 |
| DAM3-P-MF-E-300 |  | Disconnect switches | 80d | 2026-07-21 A | 2026-07-22 A | DAM3-P-PO-E-300 | 100% | 2026-07-21 | 2026-10-22 | Loading workers [480 h] |  |  | 04 | 05 | 02 | 02 |
| DAM3-P-MF-E-330 |  | Wall mounted, duplex, telephone and data outlet | 80d | 2026-07-27 A | 2026-09-16 A | DAM3-P-PO-E-330 | 100% | 2026-07-27 | 2026-10-28 | Loading workers [480 h] |  |  | 04 | 05 | 02 | 02 |
|  | 2 | **DELIVERY** |  | 2026-05-03 | 2026-09-20 |  |  |  |  |  |  |  |  |  |  |  |
| DAM3-P-DL-E-310 |  | PVC conduits | 7d | 2026-05-03 A | 2026-05-20 A | DAM3-P-MF-E-310 | 100% | 2026-07-25 | 2026-08-01 | Unloading workers [112 h]; Construction Cost [15738.7] | 15,738.66 | 15,738.66 | 04 | 05 | 02 | 03 |
| DAM3-P-DL-E-340 |  | Grounding system | 7d | 2026-05-10 A | 2026-05-19 A | DAM3-P-MF-E-340 | 100% | 2026-09-09 | 2026-09-16 | Unloading workers [112 h]; Construction Cost [65141.3] | 65,141.26 | 65,141.26 | 04 | 05 | 02 | 03 |
| DAM3-P-DL-E-370 |  | HDPE ducts | 7d | 2026-05-10 A | 2026-05-19 A | DAM3-P-MF-E-370 | 100% | 2026-09-21 | 2026-09-29 | Unloading workers [112 h]; Construction Cost [176020] | 176,019.75 | 176,019.75 | 04 | 05 | 02 | 03 |
| DAM3-P-DL-E-290 |  | Low Voltage cables | 7d | 2026-07-23 A | 2026-07-25 A | DAM3-P-MF-E-290 | 100% | 2026-08-04 | 2026-08-11 | Unloading workers [112 h]; Construction Cost [299034] | 299,034.47 | 299,034.47 | 04 | 05 | 02 | 03 |
| DAM3-P-DL-E-300 |  | Disconnect switches | 7d | 2026-07-23 A | 2026-07-25 A | DAM3-P-MF-E-300 | 100% | 2026-08-04 | 2026-08-11 | Unloading workers [112 h]; Construction Cost [100576] | 100,576.04 | 100,576.04 | 04 | 05 | 02 | 03 |
| DAM3-P-DL-E-330 |  | Wall mounted, duplex, telephone and data outlet | 7d | 2026-09-17 A | 2026-09-20 A | DAM3-P-MF-E-330 | 100% | 2026-09-28 | 2026-10-05 | Unloading workers [112 h]; Construction Cost [88627.4] | 88,627.44 | 88,627.44 | 04 | 05 | 02 | 03 |
| DAM3-P-DL-E-350 |  | Wiring devices | 7d | 2026-09-17 A | 2026-09-20 A | DAM3-P-MF-E-350 | 100% | 2026-09-28 | 2026-10-05 | Unloading workers [112 h]; Construction Cost [66414.3] | 66,414.34 | 66,414.34 | 04 | 05 | 02 | 03 |
| DAM3-P-DL-E-2100 |  | Cable Tray | 7d | 2026-09-20 A | 2026-09-20 A | DAM3-E-MF-E-210 | 100% | 2026-10-01 | 2026-10-08 | Purchaser [112 h]; Construction Cost [1063.8] | 1,063.8 | 1,063.8 | 04 | 05 | 02 | 03 |
| DAM3-P-DL-E-320 |  | Wires | 7d | 2026-09-20 A | 2026-09-20 A | DAM3-P-MF-E-320 | 100% | 2026-10-01 | 2026-10-08 | Unloading workers [112 h]; Construction Cost [7379.37] | 7,379.37 | 7,379.37 | 04 | 05 | 02 | 03 |

| ID | WBS | Activity | Duration | Start | Finish | Predecessors | Complete | Planned start | Planned finish | Resources | Phasing Code Category | Discipline | Procurement Lead Category | Procurement Stages |
| --- | --- | --- | --- | --- | --- | --- | --- | --- | --- | --- | --- | --- | --- | --- |
|  | 3 | **STAGING TIME** |  | 2026-05-03 | 2026-09-20 |  |  |  |  |  |  |  |  |  |
| DAM3-P-ST-E-310 |  | PVC conduits | 7d | 2026-05-03 A | 2026-05-20 A | DAM3-P-DL-E-310 | 100% | 2026-08-02 | 2026-08-09 |  | 04 | 05 | 02 | 04 |
| DAM3-P-ST-E-340 |  | Grounding system | 7d | 2026-05-10 A | 2026-05-19 A | DAM3-P-DL-E-340, DAM3-P-ST-E-320 | 100% | 2026-09-16 | 2026-09-24 |  | 04 | 05 | 02 | 04 |
| DAM3-P-ST-E-370 |  | HDPE ducts | 7d | 2026-05-10 A | 2026-05-19 A | DAM3-P-DL-E-370 | 100% | 2026-07-27 | 2026-08-03 |  | 04 | 05 | 02 | 04 |
| DAM3-P-ST-E-290 |  | Low Voltage cables | 7d | 2026-07-25 A | 2026-07-25 A | DAM3-P-DL-E-290, DAM3-P-ST-E-350 | 100% | 2026-09-30 | 2026-10-08 |  | 04 | 05 | 02 | 04 |
| DAM3-P-ST-E-300 |  | Disconnect switches | 7d | 2026-07-25 A | 2026-07-25 A | DAM3-P-DL-E-300, DAM3-P-ST-E-370 | 100% | 2026-09-29 | 2026-10-06 |  | 04 | 05 | 02 | 04 |
| DAM3-P-ST-E-330 |  | Wall mounted, duplex, telephone and data outlet | 7d | 2026-09-17 A | 2026-09-20 A | DAM3-P-DL-E-330, DAM3-P-ST-E-290 | 100% | 2026-10-14 | 2026-10-22 |  | 04 | 05 | 02 | 04 |
| DAM3-P-ST-E-350 |  | Wiring devices | 7d | 2026-09-17 A | 2026-09-20 A | DAM3-P-DL-E-350 | 100% | 2026-09-28 | 2026-10-06 |  | 04 | 05 | 02 | 04 |
| DAM3-E-ST-E-210 |  | Cable Tray | 7d | 2026-09-20 A | 2026-09-20 A | DAM3-P-DL-E-2100, DAM3-P-ST-E-310 | 100% | 2026-10-10 | 2026-10-17 |  | 04 | 05 | 02 | 04 |
| DAM3-P-ST-E-320 |  | Wires | 7d | 2026-09-20 A | 2026-09-20 A | DAM3-P-DL-E-320 | 100% | 2026-10-10 | 2026-10-17 |  | 04 | 05 | 02 | 04 |
|  | 4 | **EXTERNAL** |  | 2026-03-02 | 2026-09-21 |  |  |  |  |  |  |  |  |  |
|  | 1 | **PO ISSUE** |  | 2026-03-02 | 2026-06-21 |  |  |  |  |  |  |  |  |  |
| DAM3-P-PO-EX-80 |  | Asphalt works | 5d | 2026-03-02 A | 2026-03-02 A | DAM3-E-MA-EX-0010 | 100% | 2026-06-21 | 2026-06-25 | Purchaser [80 h] | 04 | 07 | 02 | 01 |
| DAM3-P-PO-EX-100 |  | Road markings | 5d | 2026-06-21 A | 2026-06-21 A | DAM3-E-MA-EX-0030 | 100% | 2026-06-23 | 2026-06-28 | Purchaser [80 h] | 04 | 07 | 02 | 01 |
| DAM3-P-PO-EX-110 |  | Road signs | 5d | 2026-06-21 A | 2026-06-21 A | DAM3-E-MA-EX-0040 | 100% | 2026-06-23 | 2026-06-28 | Purchaser [80 h] | 04 | 07 | 02 | 01 |
| DAM3-P-PO-EX-130 |  | Interlock tiles | 5d | 2026-06-21 A | 2026-06-21 A | DAM3-E-MA-EX-0060, DAM3-P-ST-M-570 | 100% | 2026-07-11 | 2026-07-16 | Purchaser [80 h] | 04 | 07 | 02 | 01 |
| DAM3-P-PO-EX-140 |  | Curbstones | 5d | 2026-06-21 A | 2026-06-21 A | DAM3-E-MA-EX-0070 | 100% | 2026-06-23 | 2026-06-28 | Purchaser [80 h] | 04 | 07 | 02 | 01 |
| DAM3-P-PO-EX-150 |  | Gravel bedding | 5d | 2026-06-21 A | 2026-06-21 A | DAM3-E-MA-EX-0080 | 100% | 2026-06-23 | 2026-06-28 | Purchaser [80 h] | 04 | 07 | 02 | 01 |
| DAM3-P-PO-EX-90 |  | Concrete parking bumper | 5d | 2026-06-21 A | 2026-06-21 A | DAM3-E-MA-EX-0020 | 100% | 2026-06-23 | 2026-06-28 | Purchaser [80 h] | 04 | 07 | 02 | 01 |
|  | 4 | **MANUFACTURING** |  | 2026-03-03 | 2026-09-20 |  |  |  |  |  |  |  |  |  |
| DAM3-P-MF-EX-80 |  | Asphalt works | 100d | 2026-03-03 A | 2026-06-07 A | DAM3-P-PO-EX-80 | 100% | 2026-06-27 | 2026-10-21 | Loading workers [480 h] | 04 | 07 | 02 | 02 |
| DAM3-P-MF-EX-100 |  | Road markings | 90d | 2026-06-28 A | 2026-09-19 A | DAM3-P-PO-EX-100 | 100% | 2026-06-28 | 2026-10-11 | Loading workers [480 h] | 04 | 07 | 02 | 02 |
| DAM3-P-MF-EX-110 |  | Road signs | 90d | 2026-06-28 A | 2026-09-17 A | DAM3-P-PO-EX-110 | 100% | 2026-06-28 | 2026-10-11 | Loading workers [480 h] | 04 | 07 | 02 | 02 |
| DAM3-P-MF-EX-140 |  | Curbstones | 90d | 2026-06-28 A | 2026-09-20 A | DAM3-P-PO-EX-140 | 100% | 2026-06-28 | 2026-10-11 | Loading workers [480 h] | 04 | 07 | 02 | 02 |
| DAM3-P-MF-EX-150 |  | Gravel bedding | 90d | 2026-06-28 A | 2026-09-20 A | DAM3-P-PO-EX-150 | 100% | 2026-06-28 | 2026-10-11 | Loading workers [480 h] | 04 | 07 | 02 | 02 |
| DAM3-P-MF-EX-90 |  | Concrete parking bumper | 90d | 2026-06-28 A | 2026-09-19 A | DAM3-P-PO-EX-90 | 100% | 2026-06-28 | 2026-10-11 | Loading workers [480 h] | 04 | 07 | 02 | 02 |
| DAM3-P-MF-EX-130 |  | Interlock tiles | 90d | 2026-07-21 A | 2026-09-20 A | DAM3-P-PO-EX-130 | 100% | 2026-07-21 | 2026-11-03 | Loading workers [480 h] | 04 | 07 | 02 | 02 |

| ID | WBS | Activity | Duration | Start | Finish | Predecessors | Complete | Planned start | Planned finish | Resources | Cost | Actual cost | Phasing Code Category | Discipline | Procurement Lead Category | Procurement Stages |
| --- | --- | --- | --- | --- | --- | --- | --- | --- | --- | --- | --- | --- | --- | --- | --- | --- |
|  | 2 | **DELIVERY** |  | 2026-06-08 | 2026-09-21 |  |  |  |  |  |  |  |  |  |  |  |
| DAM3-P-DL-EX-80 |  | Asphalt works | 7d | 2026-06-08 A | 2026-06-17 A | DAM3-P-MF-EX-80 | 100% | 2026-10-22 | 2026-10-29 | Unloading workers [112 h]; Construction Cost [1868985] | 1,868,985.04 | 1,868,985.04 | 04 | 07 | 02 | 03 |
| DAM3-P-DL-EX-130 |  | Interlock tiles | 7d | 2026-09-17 A | 2026-09-20 A | DAM3-P-MF-EX-130 | 100% | 2026-10-06 | 2026-10-13 | Unloading workers [720 h]; Construction Cost [141980] | 141,980.16 | 141,980.16 | 04 | 07 | 02 | 03 |
| DAM3-P-DL-EX-140 |  | Curbstones | 7d | 2026-09-17 A | 2026-09-20 A | DAM3-P-MF-EX-140 | 100% | 2026-09-29 | 2026-10-06 | Unloading workers [720 h]; Construction Cost [86912.4] | 86,912.4 | 86,912.4 | 04 | 07 | 02 | 03 |
| DAM3-P-DL-EX-150 |  | Gravel bedding | 7d | 2026-09-17 A | 2026-09-21 A | DAM3-P-MF-EX-150 | 100% | 2026-09-29 | 2026-10-06 | Unloading workers [720 h]; Construction Cost [66111.9] | 66,111.93 | 66,111.93 | 04 | 07 | 02 | 03 |
| DAM3-P-DL-EX-110 |  | Road signs | 7d | 2026-09-20 A | 2026-09-20 A | DAM3-P-MF-EX-110 | 100% | 2026-10-01 | 2026-10-08 | Unloading workers [720 h]; Construction Cost [31028.6] | 31,028.59 | 31,028.59 | 04 | 07 | 02 | 03 |
| DAM3-P-DL-EX-100 |  | Road markings | 7d | 2026-09-21 A | 2026-09-21 A | DAM3-P-MF-EX-100 | 100% | 2026-10-03 | 2026-10-10 | Unloading workers [720 h]; Construction Cost [11308.9] | 11,308.91 | 11,308.91 | 04 | 07 | 02 | 03 |
| DAM3-P-DL-EX-90 |  | Concrete parking bumper | 7d | 2026-09-21 A | 2026-09-21 A | DAM3-P-MF-EX-90 | 100% | 2026-10-03 | 2026-10-10 | Unloading workers [112 h]; Construction Cost [9558.14] | 9,558.14 | 9,558.14 | 04 | 07 | 02 | 03 |
|  | 3 | **STAGING TIME** |  | 2026-06-08 | 2026-09-21 |  |  |  |  |  |  |  |  |  |  |  |
| DAM3-P-ST-EX-80 |  | Asphalt works | 7d | 2026-06-08 A | 2026-06-08 A | DAM3-P-DL-EX-80 | 100% | 2026-10-31 | 2026-11-07 |  |  |  | 04 | 07 | 02 | 04 |
| DAM3-P-ST-EX-130 |  | Interlock tiles | 7d | 2026-09-17 A | 2026-09-20 A | DAM3-P-DL-EX-130 | 100% | 2026-10-14 | 2026-10-21 |  |  |  | 04 | 07 | 02 | 04 |
| DAM3-P-ST-EX-140 |  | Curbstones | 7d | 2026-09-17 A | 2026-09-20 A | DAM3-P-DL-EX-140, DAM3-P-ST-EX-80 | 100% | 2026-10-07 | 2026-10-14 |  |  |  | 04 | 07 | 02 | 04 |
| DAM3-P-ST-EX-150 |  | Gravel bedding | 7d | 2026-09-17 A | 2026-09-21 A | DAM3-P-DL-EX-150 | 100% | 2026-10-07 | 2026-10-14 |  |  |  | 04 | 07 | 02 | 04 |
| DAM3-P-ST-EX-110 |  | Road signs | 7d | 2026-09-20 A | 2026-09-20 A | DAM3-P-DL-EX-110 | 100% | 2026-09-20 | 2026-09-28 |  |  |  | 04 | 07 | 02 | 04 |
| DAM3-P-ST-EX-100 |  | Road markings | 7d | 2026-09-21 A | 2026-09-21 A | DAM3-P-DL-EX-100 | 100% | 2026-10-11 | 2026-10-18 |  |  |  | 04 | 07 | 02 | 04 |
| DAM3-P-ST-EX-90 |  | Concrete parking bumper | 7d | 2026-09-21 A | 2026-09-21 A | DAM3-P-DL-EX-90 | 100% | 2026-10-11 | 2026-10-18 |  |  |  | 04 | 07 | 02 | 04 |
|  | 5 | **ENVIRONMENTAL** |  | 2026-06-21 | 2026-09-20 |  |  |  |  |  |  |  |  |  |  |  |
|  | 1 | **PO ISSUE** |  | 2026-06-21 | 2026-06-21 |  |  |  |  |  |  |  |  |  |  |  |
| DAM3-P-PO-EN-100 |  | HDPE pipes for fire system | 5d | 2026-06-21 A | 2026-06-21 A | DAM3-E-MA-EN-0010 | 100% | 2026-06-23 | 2026-06-28 | Purchaser [80 h] |  |  | 04 | 07 | 02 | 01 |
| DAM3-P-PO-EN-110 |  | Directly buried gate valve for fire system | 5d | 2026-06-21 A | 2026-06-21 A | DAM3-E-MA-EN-0020, DAM3-P-PO-EN-100 | 100% | 2026-06-29 | 2026-07-04 | Purchaser [80 h] |  |  | 04 | 07 | 02 | 01 |
| DAM3-P-PO-EN-120 |  | HDPE pipes for water supply system | 5d | 2026-06-21 A | 2026-06-21 A | DAM3-E-MA-EN-0030, DAM3-P-PO-EN-110 | 100% | 2026-07-05 | 2026-07-09 | Purchaser [80 h] |  |  | 04 | 07 | 02 | 01 |
| DAM3-P-PO-EN-130 |  | Directly buried gate valve for water system | 5d | 2026-06-21 A | 2026-06-21 A | DAM3-E-MA-EN-0040, DAM3-P-PO-EN-120 | 100% | 2026-07-11 | 2026-07-15 | Purchaser [16 h] |  |  | 04 | 07 | 02 | 01 |
| DAM3-P-PO-EN-140 |  | Air valve | 5d | 2026-06-21 A | 2026-06-21 A | DAM3-E-MA-EN-0050, DAM3-P-PO-EN-130 | 100% | 2026-07-16 | 2026-07-21 | Purchaser [16 h] |  |  | 04 | 07 | 02 | 01 |
| DAM3-P-PO-EN-150 |  | Washout valve | 5d | 2026-06-21 A | 2026-06-21 A | DAM3-E-MA-EN-0060, DAM3-P-PO-EN-140 | 100% | 2026-07-22 | 2026-07-27 | Purchaser [16 h] |  |  | 04 | 07 | 02 | 01 |
| DAM3-P-PO-EN-160 |  | Gate valve | 5d | 2026-06-21 A | 2026-06-21 A | DAM3-E-MA-EN-0070, DAM3-P-PO-EN-150 | 100% | 2026-07-28 | 2026-08-02 | Purchaser [16 h] |  |  | 04 | 07 | 02 | 01 |
| DAM3-P-PO-EN-170 |  | UPVC pipes | 5d | 2026-06-21 A | 2026-06-21 A | DAM3-E-MA-EN-0080, DAM3-P-PO-EN-160 | 100% | 2026-08-03 | 2026-08-08 | Purchaser [16 h] |  |  | 04 | 07 | 02 | 01 |

| ID | WBS | Activity | Duration | Start | Finish | Predecessors | Complete | Planned start | Planned finish | Resources | Cost | Actual cost | Phasing Code Category | Discipline | Procurement Lead Category | Procurement Stages |
| --- | --- | --- | --- | --- | --- | --- | --- | --- | --- | --- | --- | --- | --- | --- | --- | --- |
|  | 4 | **MANUFACTURING** |  | 2026-06-22 | 2026-09-19 |  |  |  |  |  |  |  |  |  |  |  |
| DAM3-P-MF-EN-120 |  | HDPE pipes for water supply system | 90d | 2026-06-22 A | 2026-08-15 A | DAM3-P-PO-EN-120 | 100% | 2026-08-17 | 2026-11-30 | Loading workers [40 h] |  |  | 04 | 07 | 02 | 02 |
| DAM3-P-MF-EN-130 |  | Directly buried gate valve for water system | 90d | 2026-06-22 A | 2026-09-19 A | DAM3-P-PO-EN-130 | 100% | 2026-08-17 | 2026-11-30 | Loading workers [40 h] |  |  | 04 | 07 | 02 | 02 |
| DAM3-P-MF-EN-140 |  | Air valve | 90d | 2026-06-22 A | 2026-09-19 A | DAM3-P-PO-EN-140 | 100% | 2026-08-17 | 2026-11-30 | Loading workers [40 h] |  |  | 04 | 07 | 02 | 02 |
| DAM3-P-MF-EN-150 |  | Washout valve | 90d | 2026-06-22 A | 2026-09-19 A | DAM3-P-PO-EN-150 | 100% | 2026-08-17 | 2026-11-30 | Loading workers [40 h] |  |  | 04 | 07 | 02 | 02 |
| DAM3-P-MF-EN-160 |  | Gate valve | 90d | 2026-06-22 A | 2026-09-19 A | DAM3-P-PO-EN-160 | 100% | 2026-08-17 | 2026-11-30 | Loading workers [40 h] |  |  | 04 | 07 | 02 | 02 |
| DAM3-P-MF-EN-170 |  | UPVC pipes | 90d | 2026-06-22 A | 2026-07-25 A | DAM3-P-PO-EN-170 | 100% | 2026-08-17 | 2026-11-30 | Loading workers [240 h] |  |  | 04 | 07 | 02 | 02 |
| DAM3-P-MF-EN-100 |  | HDPE pipes for fire system | 90d | 2026-06-28 A | 2026-07-23 A | DAM3-P-PO-EN-100 | 100% | 2026-06-28 | 2026-10-11 | Loading workers [1440 h] |  |  | 04 | 07 | 02 | 02 |
| DAM3-P-MF-EN-110 |  | Directly buried gate valve for fire system | 90d | 2026-07-04 A | 2026-09-19 A | DAM3-P-PO-EN-110 | 100% | 2026-07-04 | 2026-10-17 | Loading workers [1440 h] |  |  | 04 | 07 | 02 | 02 |
|  | 2 | **DELIVERY** |  | 2026-07-25 | 2026-09-20 |  |  |  |  |  |  |  |  |  |  |  |
| DAM3-P-DL-EN-100 |  | HDPE pipes for fire system | 7d | 2026-07-25 A | 2026-07-26 A | DAM3-P-MF-EN-100 | 100% | 2026-08-05 | 2026-08-12 | Unloading workers [112 h]; Construction Cost [144973] | 144,972.85 | 144,972.85 | 04 | 07 | 02 | 03 |
| DAM3-P-DL-EN-170 |  | UPVC pipes | 7d | 2026-07-26 A | 2026-07-26 A | DAM3-P-MF-EN-170 | 100% | 2026-11-09 | 2026-11-16 | Unloading workers [112 h]; Construction Cost [134788] | 134,788.44 | 134,788.44 | 04 | 07 | 02 | 03 |
| DAM3-P-DL-EN-120 |  | HDPE pipes for water supply system | 7d | 2026-08-17 A | 2026-08-17 A | DAM3-P-MF-EN-120 | 100% | 2026-12-01 | 2026-12-08 | Unloading workers [112 h]; Construction Cost [10655] | 10,655.04 | 10,655.04 | 04 | 07 | 02 | 03 |
| DAM3-P-DL-EN-160 |  | Gate valve | 7d | 2026-09-05 A | 2026-09-20 A | DAM3-P-MF-EN-160 | 100% | 2026-09-15 | 2026-09-22 | Unloading workers [112 h]; Construction Cost [42658.4] | 42,658.36 | 42,658.36 | 04 | 07 | 02 | 03 |
| DAM3-P-DL-EN-110 |  | Directly buried gate valve for fire system | 7d | 2026-09-20 A | 2026-09-20 A | DAM3-P-MF-EN-110 | 100% | 2026-10-01 | 2026-10-08 | Unloading workers [112 h]; Construction Cost [7270.01] | 7,270.01 | 7,270.01 | 04 | 07 | 02 | 03 |
| DAM3-P-DL-EN-130 |  | Directly buried gate valve for water system | 7d | 2026-09-20 A | 2026-09-20 A | DAM3-P-MF-EN-130 | 100% | 2026-10-01 | 2026-10-08 | Unloading workers [112 h]; Construction Cost [16098.5] | 16,098.52 | 16,098.52 | 04 | 07 | 02 | 03 |
| DAM3-P-DL-EN-140 |  | Air valve | 7d | 2026-09-20 A | 2026-09-20 A | DAM3-P-MF-EN-140 | 100% | 2026-10-01 | 2026-10-08 | Unloading workers [112 h]; Construction Cost [13087.1] | 13,087.07 | 13,087.07 | 04 | 07 | 02 | 03 |
| DAM3-P-DL-EN-150 |  | Washout valve | 7d | 2026-09-20 A | 2026-09-20 A | DAM3-P-MF-EN-150 | 100% | 2026-10-01 | 2026-10-08 | Unloading workers [112 h]; Construction Cost [15346.9] | 15,346.94 | 15,346.94 | 04 | 07 | 02 | 03 |
|  | 3 | **STAGING TIME** |  | 2026-07-25 | 2026-09-20 |  |  |  |  |  |  |  |  |  |  |  |
| DAM3-P-ST-EN-100 |  | HDPE pipes for fire system | 7d | 2026-07-25 A | 2026-07-26 A | DAM3-P-DL-EN-100 | 100% | 2026-08-13 | 2026-08-20 |  |  |  | 04 | 07 | 02 | 04 |
| DAM3-P-ST-EN-170 |  | UPVC pipes | 7d | 2026-07-26 A | 2026-07-26 A | DAM3-P-DL-EN-170 | 100% | 2026-11-17 | 2026-11-24 |  |  |  | 04 | 07 | 02 | 04 |
| DAM3-P-ST-EN-120 |  | HDPE pipes for water supply system | 7d | 2026-08-17 A | 2026-08-17 A | DAM3-P-DL-EN-120, DAM3-P-ST-EN-100 | 100% | 2026-12-09 | 2026-12-16 |  |  |  | 04 | 07 | 02 | 04 |
| DAM3-P-ST-EN-160 |  | Gate valve | 7d | 2026-09-05 A | 2026-09-20 A | DAM3-P-DL-EN-160 | 100% | 2026-10-10 | 2026-10-17 |  |  |  | 04 | 07 | 02 | 04 |
| DAM3-P-ST-EN-110 |  | Directly buried gate valve for fire system | 7d | 2026-09-20 A | 2026-09-20 A | DAM3-P-DL-EN-110 | 100% | 2026-10-10 | 2026-10-17 |  |  |  | 04 | 07 | 02 | 04 |
| DAM3-P-ST-EN-130 |  | Directly buried gate valve for water system | 7d | 2026-09-20 A | 2026-09-20 A | DAM3-P-DL-EN-130, DAM3-P-ST-EN-110 | 100% | 2026-10-18 | 2026-10-25 |  |  |  | 04 | 07 | 02 | 04 |
| DAM3-P-ST-EN-140 |  | Air valve | 7d | 2026-09-20 A | 2026-09-20 A | DAM3-P-DL-EN-140 | 100% | 2026-10-10 | 2026-10-17 |  |  |  | 04 | 07 | 02 | 04 |
| DAM3-P-ST-EN-150 |  | Washout valve | 7d | 2026-09-20 A | 2026-09-20 A | DAM3-P-DL-EN-150 | 100% | 2026-10-10 | 2026-10-17 |  |  |  | 04 | 07 | 02 | 04 |

| ID | WBS | Activity | Duration | Start | Finish | Predecessors | Complete | Planned start | Planned finish | Resources | Cost | Actual cost | Phasing Code Category | Discipline | Project component code | 00 Activity ID | Zone # | AMH Tender Act. ID | Tender Original Duration |
| --- | --- | --- | --- | --- | --- | --- | --- | --- | --- | --- | --- | --- | --- | --- | --- | --- | --- | --- | --- |
|  | 5 | **CONSTRUCTION (67%)** |  | 2026-01-14 | 2027-02-27 |  |  |  |  |  |  |  |  |  |  |  |  |  |  |
|  | 1 | **RBF 900 SQM FACTORIES** |  | 2026-01-14 | 2027-02-23 |  |  |  |  |  |  |  |  |  |  |  |  |  |  |
|  | 2 | **SITE WORKS** |  | 2026-01-14 | 2026-01-31 |  |  |  |  |  |  |  |  |  |  |  |  |  |  |
| DAM3-C-GEN-88 |  | Demolition of the existing pavement | 12d | 2026-01-14 A | 2026-01-31 A | DAM3-C-GEN-10 | 100% | 2026-03-07 | 2026-03-24 | Construction Cost [10892.4]; Helper [192 h]; Equipment Operator [192 h]; Wheel Loader [120 h]; Truck [120 h]; POKLIN [120 h] | 10,892.39 | 10,892.39 | 05 | 07 | 12 |  |  |  |  |
| DAM3-C-GEN-10 |  | Initial Site Survey and Setting out | 12d | 2026-01-19 A | 2026-01-24 A | DAM3-MOB-SO.0016 | 100% | 2026-03-03 | 2026-03-16 | General Labour [160 h]; Surveyor [160 h]; Construction Cost |  |  | 05 | 07 | 12 | H1.C.X0.00.SW.X.2010 | 1 |  |  |
|  | 4 | **BLOCK B6** |  | 2026-02-15 | 2027-01-19 |  |  |  |  |  |  |  |  |  |  |  |  |  |  |
|  | 1 | **STRUCTURAL** |  | 2026-02-15 | 2026-10-28 |  |  |  |  |  |  |  |  |  |  |  |  |  |  |
|  | 1 | **FOOTING** |  | 2026-02-15 | 2026-05-10 |  |  |  |  |  |  |  |  |  |  |  |  |  |  |
| DAM3-C-B6-S-160 |  | Excavation for footings | 8d | 2026-02-15 A | 2026-03-24 A | DAM3-MOB-SO.0016, DAM3-MOB-SO.0020, DAM3-E-SA-R-730, DAM3-E-SA-R-740, DAM3-E-SA-R-750, DAM3-C-GEN-10 | 100% | 2026-03-07 | 2026-03-16 | General Labour [112 h]; Equipment Operator [112 h]; Truck [32 h]; Excavator [32 h]; Mini Roller Compactor [32 h]; Construction Cost [89859.6] | 89,859.61 | 89,859.61 | 05 | 01 | 01 | H1.C.K1.00.SW.F.1010 | 1 | PH1-MHR-ST-640 | 12 |
| DAM3-C-B6-S-6143 |  | Soil replacement - rock fill | 6d | 2026-04-02 A | 2026-04-04 A | DAM3-C-B6-S-160 | 100% | 2026-04-07 | 2026-04-13 | General Labour [256 h]; Truck [128 h]; Mini Roller Compactor [128 h]; Equipment Operator [256 h]; Wheel Loader [128 h]; Construction Cost [179062] | 179,061.91 | 179,061.91 | 05 | 01 | 01 | H1.C.K1.00.SW.F.1060 | 1 | PH1-MHR-ST-645 | 15 |
| DAM3-C-B6-S-6153 |  | Engineering fill | 6d | 2026-04-12 A | 2026-04-13 A | DAM3-C-B6-S-6143 | 100% | 2026-04-15 | 2026-04-21 | General Labour [256 h]; Truck [64 h]; Mini Roller Compactor [64 h]; Equipment Operator [256 h]; Wheel Loader [64 h]; Construction Cost [46046.2] | 46,046.19 | 46,046.19 | 05 | 01 | 01 | H1.C.K1.00.SW.F.1060 | 1 | PH1-MHR-ST-645 | 15 |
| DAM3-C-B6-S-537 |  | Lean Concrete Below Footings | 2d | 2026-04-22 A | 2026-04-22 A | DAM3-C-B6-S-687 | 100% | 2026-04-30 | 2026-05-02 | Mason [32 h]; Construction Cost [8229.34] | 8,229.34 | 8,229.34 | 05 | 01 | 01 | H1.C.K1.00.SW.F.1030 | 1 | PH1-MHR-ST-1020 | 10 |
| DAM3-C-B6-S-687 |  | Vapour Barrier for Footings | 1d | 2026-04-22 A | 2026-04-22 A | DAM3-C-B6-S-777, DAM3-P-ST-C-70 | 100% | 2026-04-29 | 2026-04-29 | General Labour [16 h]; Construction Cost [7940.1] | 7,940.1 | 7,940.1 | 05 | 01 | 01 | H1.C.K1.00.SW.F.1040 | 1 | PH1-MHR-ST-1080 | 15 |
| DAM3-C-B6-S-777 |  | Anti Termite Below Footings | 1d | 2026-04-22 A | 2026-04-22 A | DAM3-P-ST-C-50, DAM3-C-B6-S-6153, DAM3-PRE-SUB-1013, DAM3-PRE-SUB-1014, DAM3-PRE-SUB-1015, DAM3-E-SA-R-760, DAM3-E-SA-R-770, DAM3-E-SA-R-780 | 100% | 2026-04-28 | 2026-04-28 | Mason [16 h]; Construction Cost [11905.5] | 11,905.55 | 11,905.55 | 05 | 01 | 01 | H1.C.K1.00.SW.F.1030 | 1 | PH1-MHR-ST-1020 | 10 |
| DAM3-C-B6-S-587 |  | Rebar for Footings | 4d | 2026-05-02 A | 2026-05-05 A | DAM3-C-B6-S-537, DAM3-E-MT-C-2010, DAM3-P-ST-C-90, DAM3-C-GEN-88, DAM3-E-SA-C-750 | 100% | 2026-05-21 | 2026-05-30 | Steel Fixer [64 h]; Construction Cost [101845] | 101,844.98 | 101,844.98 | 05 | 01 | 01 |  | 1 |  |  |
| DAM3-C-B6-S-597 |  | Formwork for Footings | 4d | 2026-05-04 A | 2026-05-09 A | DAM3-C-B6-S-587 | 100% | 2026-06-02 | 2026-06-07 | Carperter [64 h]; Construction Cost [25461.2] | 25,461.25 | 25,461.25 | 05 | 01 | 01 |  | 1 |  |  |
| DAM3-C-B6-S-547 |  | Pouring Concrete for Footings | 1d | 2026-05-10 A | 2026-05-10 A | DAM3-C-B6-S-597, DAM3-P-ST-C-60 | 100% | 2026-06-07 | 2026-06-08 | Carperter [16 h]; Mason [16 h]; Steel Fixer [16 h]; Concrete Mixer [8 h]; Equipment Operator [16 h]; Construction Cost [127306] | 127,306.23 | 127,306.23 | 05 | 01 | 01 | H1.C.K1.00.RC.F.1010 | 1 | PH1-MHR-ST-1030 | 21 |
|  | 2 | **COLUMN NECK** |  | 2026-05-05 | 2026-06-01 |  |  |  |  |  |  |  |  |  |  |  |  |  |  |
| DAM3-C-B6-S-637 |  | Rebar for column neck | 2d | 2026-05-05 A | 2026-05-09 A | DAM3-C-B6-S-547 | 100% | 2026-06-04 | 2026-06-07 | Steel Fixer [32 h]; Construction Cost [14919.2] | 14,919.19 | 14,919.19 | 05 | 01 | 01 |  | 1 |  |  |
| DAM3-C-B6-S-647 |  | Formwork for column neck | 2d | 2026-05-12 A | 2026-05-16 A | DAM3-C-B6-S-637, DAM3-E-MT-C-2010 | 100% | 2026-06-04 | 2026-06-07 | Carperter [32 h]; Construction Cost [9946.13] | 9,946.13 | 9,946.13 | 05 | 01 | 01 |  | 1 |  |  |
| DAM3-C-B6-S-627 |  | Pouring Concrete for column neck | 1d | 2026-05-17 A | 2026-05-17 A | DAM3-C-B6-S-647 | 100% | 2026-06-10 | 2026-06-11 | Mason [16 h]; Carperter [16 h]; Concrete Mixer [8 h]; Steel Fixer [16 h]; Equipment Operator [16 h]; Construction Cost [24865.3] | 24,865.31 | 24,865.31 | 05 | 01 | 01 | H1.C.K1.00.RC.F.1110 | 1 | PH1-MHR-ST-1030 | 21 |
| DAM3-C-B6-S-677 |  | Damp proof /Bitumin paint on Footings & column neck | 2d | 2026-05-18 A | 2026-05-19 A | DAM3-C-B6-S-627, DAM3-P-ST-C-80 | 100% | 2026-06-06 | 2026-06-08 | Painter [32 h]; Construction Cost [24777.7] | 24,777.73 | 24,777.73 | 05 | 01 | 01 | H1.C.K1.00.SW.F.1050 | 1 | PH1-MHR-ST-1080 | 15 |
| DAM3-C-B6-S-737 |  | Backfilling / Compaction up to Bottom of Grade Beams | 7d | 2026-05-24 A | 2026-06-01 A | DAM3-C-B6-S-677 | 100% | 2026-06-10 | 2026-06-18 | General Labour [256 h]; Truck [128 h]; Mini Roller Compactor [128 h]; Equipment Operator [256 h]; Wheel Loader [128 h]; Construction Cost [46046.2] | 46,046.19 | 46,046.19 | 05 | 01 | 01 | H1.C.K1.00.SW.F.1060 | 1 | PH1-MHR-ST-645 | 15 |
|  | 3 | **GRADE BEAM** |  | 2026-06-04 | 2026-06-22 |  |  |  |  |  |  |  |  |  |  |  |  |  |  |
| DAM3-C-B6-S-557 |  | Lean Concrete Below Grade Beams | 2d | 2026-06-04 A | 2026-06-04 A | DAM3-C-B6-S-707 | 100% | 2026-06-18 | 2026-06-20 | Mason [32 h]; Construction Cost [4431.19] | 4,431.19 | 4,431.19 | 05 | 01 | 01 | H1.C.K1.00.SW.F.1130 | 1 | PH1-MHR-ST-1020 | 10 |
| DAM3-C-B6-S-707 |  | Vapour barrier for Grade Beams | 2d | 2026-06-04 A | 2026-06-04 A | DAM3-C-B6-S-787 | 100% | 2026-06-16 | 2026-06-17 | General Labour [32 h]; Construction Cost [5293.4] | 5,293.4 | 5,293.4 | 05 | 01 | 01 | H1.C.K1.00.SW.F.1040 | 1 | PH1-MHR-ST-1080 | 15 |
| DAM3-C-B6-S-787 |  | Anti Termite Below Grade Beams | 1d | 2026-06-04 A | 2026-06-04 A | DAM3-C-B6-S-737, DAM3-E-SA-C-760 | 100% | 2026-06-15 | 2026-06-15 | Mason [16 h]; Construction Cost [11905.5] | 11,905.55 | 11,905.55 | 05 | 01 | 01 | H1.C.K1.00.SW.F.1030 | 1 | PH1-MHR-ST-1020 | 10 |
| DAM3-C-B6-S-607 |  | Rebar for Grade Beams | 5d | 2026-06-08 A | 2026-06-09 A | DAM3-C-B6-S-557, DAM3-E-SA-C-860, DAM3-E-SA-C-870, DAM3-P-DL-C-130 | 100% | 2026-06-18 | 2026-06-23 | Steel Fixer [80 h]; Construction Cost [27194.5] | 27,194.46 | 27,194.46 | 05 | 01 | 01 |  | 1 |  |  |
| DAM3-C-B6-S-617 |  | Formwork for Grade Beams | 2d | 2026-06-10 A | 2026-06-14 A | DAM3-C-B6-S-607 | 100% | 2026-06-21 | 2026-06-22 | Carperter [32 h]; Construction Cost [6798.61] | 6,798.61 | 6,798.61 | 05 | 01 | 01 |  | 1 |  |  |
| DAM3-C-B6-S-767 |  | Anchor bolts installation | 2d | 2026-06-11 A | 2026-06-13 A | DAM3-C-B6-S-617 SS, DAM3-E-SA-C-770, DAM3-E-SA-C-850 | 100% | 2026-06-22 | 2026-06-23 | Carperter [32 h]; Construction Cost [57238.8] | 57,238.83 | 57,238.83 | 05 | 01 | 01 |  | 1 |  |  |
| DAM3-C-B6-S-567 |  | Pouring Concrete for Grade Beams | 1d | 2026-06-15 A | 2026-06-15 A | DAM3-C-B6-S-617, DAM3-C-B6-S-767, DAM3-P-DL-C-110 | 100% | 2026-06-28 | 2026-06-28 | Mason [16 h]; Carperter [16 h]; Concrete Mixer [8 h]; Steel Fixer [16 h]; Equipment Operator [16 h]; Construction Cost [33993.1] | 33,993.09 | 33,993.09 | 05 | 01 | 01 | H1.C.K1.00.RC.F.1110 | 1 | PH1-MHR-ST-1030 | 21 |
| DAM3-C-B6-S-717 |  | Damp proof /Bitumin paint on Grade Beams | 2d | 2026-06-20 A | 2026-06-22 A | DAM3-C-B6-S-567 | 100% | 2026-07-02 | 2026-07-04 | Painter [32 h]; Construction Cost [24777.7] | 24,777.73 | 24,777.73 | 05 | 01 | 01 | H1.C.K1.00.SW.F.1050 | 1 | PH1-MHR-ST-1080 | 15 |

| ID | WBS | Activity | Duration | Start | Finish | Predecessors | Complete | Planned start | Planned finish | Total float | Free float | Resources | Cost | Actual cost | Zone # | Phasing Code Category | Discipline | Project component code | 00 Activity ID | AMH Tender Act. ID | Tender Original Duration | project summary-4 | PS (su & rbf)-4 | New code for weekly report-4 | New discipline code-4 |
| --- | --- | --- | --- | --- | --- | --- | --- | --- | --- | --- | --- | --- | --- | --- | --- | --- | --- | --- | --- | --- | --- | --- | --- | --- | --- |
|  | 5 | **SLAB ON GRADE** |  | 2026-06-28 | 2026-10-28 |  |  |  |  |  |  |  |  |  |  |  |  |  |  |  |  |  |  |  |  |
| DAM3-C-B6-S-747 |  | Backfilling / Compaction for Slab on Grade | 7d | 2026-06-28 A | 2026-07-06 A | DAM3-C-B6-S-717 | 100% | 2026-07-11 | 2026-07-18 |  |  | Mini Roller Compactor [128 h]; General Labour [256 h]; Equipment Operator [256 h]; Wheel Loader [128 h]; Truck [128 h]; Construction Cost [23023.1] | 23,023.09 | 23,023.09 | 1 | 05 | 01 | 01 |  |  |  |  |  |  |  |
| DAM3-C-B6-S-577 |  | Pouring Concrete for Ground Slab | 4d | 2026-08-18 A | 2026-08-23 A | DAM3-C-B6-S-727 | 100% | 2026-09-02 | 2026-09-06 |  |  | Mason [64 h]; Carperter [64 h]; Steel Fixer [64 h]; Concrete Mixer [32 h]; Equipment Operator [64 h]; Construction Cost [344195] | 344,195.21 | 344,195.21 | 1 | 05 | 01 | 01 | H1.C.A1.06.RC.G.1210 | PH1-MHR-ST-496 | 24 |  |  |  |  |
| DAM3-C-B6-S-697 |  | Anti Termite Treatment below Ground Slab | 1d | 2026-08-18 A | 2026-08-23 A | DAM3-C-B6-S-747, DAM3-C-B6-S-747 FF | 100% | 2026-08-30 | 2026-08-30 |  |  | General Labour [16 h]; Construction Cost [15874.1] | 15,874.08 | 15,874.08 | 1 | 05 | 01 | 01 | H1.C.A1.06.SW.F.1220 | PH1-MHR-ST-645 | 15 |  |  |  |  |
| DAM3-C-B6-S-727 |  | Vapour barrier for below Ground Slab | 2d | 2026-08-18 A | 2026-08-23 A | DAM3-C-B6-S-697 | 100% | 2026-08-31 | 2026-09-01 |  |  | General Labour [32 h]; Construction Cost [13233.5] | 13,233.49 | 13,233.49 | 1 | 05 | 01 | 01 |  |  |  |  |  |  |  |
| DAM3-C-B6-S-757 |  | Concrete pad | 7d | 2026-10-21 | 2026-10-28 | DAM3-C-B6-A-200 |  |  |  | 2.5d | 0d | Mason [112 h]; Construction Cost [907.11] | 907.11 |  |  | 05 | 01 | 01 |  |  |  |  |  |  |  |
|  | 4 | **COLUMNS & BEAMS** |  | 2026-06-08 | 2026-10-06 |  |  |  |  |  |  |  |  |  |  |  |  |  |  |  |  |  |  |  |  |
| DAM3-C-B6-S-6101 |  | Rebar for Tie Beams | 4d | 2026-06-08 A | 2026-06-13 A | DAM3-C-B6-S-5103, DAM3-E-SA-C-780 | 100% | 2026-07-23 | 2026-07-27 |  |  | Steel Fixer [64 h]; Construction Cost [7263.64] | 7,263.64 | 7,263.64 | 1 | 05 | 01 | 01 |  |  |  | 3 | 1 | 4 | 1 |
| DAM3-C-B6-S-6102 |  | Formwork for Tie Beams | 2d | 2026-06-11 A | 2026-06-14 A | DAM3-C-B6-S-6101 | 100% | 2026-08-01 | 2026-08-02 |  |  | Carperter [32 h]; Construction Cost [1815.91] | 1,815.91 | 1,815.91 | 1 | 05 | 01 | 01 |  |  |  | 3 | 1 | 4 | 1 |
| DAM3-C-B6-S-6103 |  | Pouring Concrete for Tie Beams | 1d | 2026-06-15 A | 2026-06-15 A | DAM3-C-B6-S-6102 | 100% | 2026-07-21 | 2026-07-22 |  |  | Mason [16 h]; Carperter [16 h]; Concrete Mixer [32 h]; Steel Fixer [16 h]; Equipment Operator [16 h]; Construction Cost [9079.54] | 9,079.54 | 9,079.54 | 1 | 05 | 01 | 01 | H1.C.K1.00.RC.F.1110 | PH1-MHR-ST-1030 | 21 | 3 | 1 | 4 | 1 |
| DAM3-C-B6-S-5101 |  | Rebar for column | 5d | 2026-07-18 A | 2026-07-20 A | DAM3-C-B6-S-747, DAM3-E-SA-C-820 | 100% | 2026-08-01 | 2026-08-05 |  |  | Steel Fixer [112 h]; Construction Cost [20144] | 20,144.05 | 20,144.05 | 1 | 05 | 01 | 01 |  |  |  | 3 | 1 | 4 | 1 |
| DAM3-C-B6-S-5102 |  | Formwork for column | 4d | 2026-07-23 A | 2026-08-11 A | DAM3-C-B6-S-5101 | 100% | 2026-08-05 | 2026-08-09 |  |  | Carperter [64 h]; Construction Cost [5036.01] | 5,036.01 | 5,036.01 | 1 | 05 | 01 | 01 |  |  |  | 3 | 1 | 4 | 1 |
| DAM3-C-B6-S-5103 |  | Pouring Concrete for column | 1d | 2026-07-26 A | 2026-08-13 A | DAM3-C-B6-S-5102 | 100% | 2026-08-10 | 2026-08-10 |  |  | Mason [16 h]; Carperter [16 h]; Concrete Mixer [32 h]; Steel Fixer [16 h]; Equipment Operator [16 h]; Construction Cost [25180.1] | 25,180.06 | 25,180.06 | 1 | 05 | 01 | 01 | H1.C.K1.00.RC.F.1110 | PH1-MHR-ST-1030 | 21 | 3 | 1 | 4 | 1 |
| DAM3-C-B6-S-6113 |  | Rebar for Beams | 4d | 2026-09-21 A | 2026-09-22 A | DAM3-C-B6-S-6103, DAM3-E-SA-C-830, DAM3-E-SA-C-840 | 100% | 2026-09-22 | 2026-09-27 |  |  | Steel Fixer [64 h]; Construction Cost [13379.1] | 13,379.11 | 13,379.11 | 1 | 05 | 01 | 01 |  |  |  | 3 | 1 | 4 | 1 |
| DAM3-C-B6-S-6123 |  | Formwork for Beams | 2d | 2026-09-28 A | 2026-10-04 A | DAM3-C-B6-S-6113, DAM3-C-B6-S-6113 FF | 100% | 2026-10-04 | 2026-10-05 |  |  | Carperter [32 h]; Construction Cost [3344.77] | 3,344.77 | 3,344.77 | 1 | 05 | 01 | 01 |  |  |  | 3 | 1 | 4 | 1 |
| DAM3-C-B6-S-6133 |  | Pouring Concrete for Beams | 1d | 2026-10-01 A | 2026-10-06 A | DAM3-C-B6-S-6123, DAM3-C-B6-S-6123 FF | 100% | 2026-10-06 | 2026-10-06 |  |  | Mason [16 h]; Carperter [16 h]; Concrete Mixer [32 h]; Steel Fixer [16 h]; Equipment Operator [16 h]; Construction Cost [16723.9] | 16,723.88 | 16,723.88 | 1 | 05 | 01 | 01 | H1.C.K1.00.RC.F.1110 | PH1-MHR-ST-1030 | 21 | 3 | 1 | 4 | 1 |
|  | 5 | **STRUCTURAL STEEL** |  | 2026-07-06 | 2026-10-20 |  |  |  |  |  |  |  |  |  |  |  |  |  |  |  |  |  |  |  |  |
| DAM3-C-B6-SS-150 |  | Installation of columns | 3d | 2026-07-06 A | 2026-07-06 A | DAM3-C-B6-S-577, DAM3-E-SA-C-790, DAM3-E-ST-A-1700 | 100% | 2026-07-28 | 2026-08-01 |  |  | Structural Steel Fixer [80 h]; General Labour [80 h]; Equipment Operator [80 h]; Mobile Crane [24 h]; Construction Cost [217508] | 217,507.55 | 217,507.55 |  | 05 | 02 | 01 |  |  |  |  |  |  |  |
| DAM3-C-B6-SS-160 |  | Installation of raft and purlins | 5d | 2026-07-06 A | 2026-07-07 A | DAM3-C-B6-SS-150, DAM3-E-SA-C-800 | 100% | 2026-08-01 | 2026-08-06 |  |  | Structural Steel Fixer [160 h]; General Labour [160 h]; Mobile Crane [56 h]; Equipment Operator [160 h]; Construction Cost [326261] | 326,261.32 | 326,261.32 |  | 05 | 02 | 01 |  |  |  |  |  |  |  |
| DAM3-C-B6-SS-1020 |  | Intumescent paint to steel works | 7d | 2026-07-25 A | 2026-08-17 A | DAM3-C-B6-S-747, DAM3-E-ST-A-1700, DAM3-C-B6-SS-160 | 100% | 2026-08-15 | 2026-08-22 |  |  | Painter [112 h]; Construction Cost [317760] | 317,759.56 | 317,759.56 | 1 | 05 | 02 | 01 | H1.C.A1.SA.FI.G.0730 |  |  |  |  |  |  |
| DAM3-C-B6-SS-190 |  | Installation of roof sheet | 5d | 2026-08-24 A | 2026-08-30 A | DAM3-C-B6-A-170, DAM3-C-B6-SS-1020, DAM3-C-B6-S-6133, DAM3-E-SA-C-810, DAM3-C-B6-SS-1040, DAM3-P-ST-A-190, DAM3-P-ST-A-180 | 100% | 2026-09-22 | 2026-09-28 |  |  | Roof sheet worker [160 h]; General Labour [160 h]; Mobile Crane [40 h]; Equipment Operator [160 h]; Construction Cost [217508] | 217,507.55 | 217,507.55 |  | 05 | 02 | 01 |  |  |  |  |  |  |  |
| DAM3-C-B6-SS-1050 |  | Steel members for external platform | 7d | 2026-08-30 A | 2026-08-31 A | DAM3-C-B6-SS-1030, DAM3-C-B6-S-6133 | 100% | 2026-09-21 | 2026-09-29 |  |  | Construction Cost [18670.8]; General Labour [112 h]; Mobile Crane [56 h]; Structural Steel Fixer [112 h]; Equipment Operator [112 h] | 18,670.78 | 18,670.78 | 1 | 05 | 02 | 01 | H1.C.A1.SA.FI.G.0730 |  |  |  |  |  |  |
| DAM3-C-B6-SS-180 |  | Installation of wall sandwich panel | 5d | 2026-10-11 A | 2026-10-13 A | DAM3-C-B6-A-200 | 100% | 2026-10-27 | 2026-11-01 |  |  | Sandwich panel worker [112 h]; General Labour [112 h]; Mobile Crane [40 h]; Equipment Operator [112 h]; Construction Cost [326261] | 326,261.32 | 326,261.32 |  | 05 | 02 | 01 |  |  |  |  |  |  |  |
| DAM3-C-B6-SS-1030 |  | Steel members for office area | 7d | 2026-10-11 A | 2026-10-12 A | DAM3-C-B6-SS-160 | 100% | 2026-10-11 | 2026-10-18 |  |  | Construction Cost [115805]; Equipment Operator [112 h]; General Labour [112 h]; Mobile Crane [40 h]; Structural Steel Fixer [112 h] | 115,805.2 | 115,805.2 | 1 | 05 | 02 | 01 | H1.C.A1.SA.FI.G.0730 |  |  |  |  |  |  |
| DAM3-C-B6-SS-1040 |  | Epoxy paint to steel members at office area | 7d | 2026-10-13 | 2026-10-20 | DAM3-C-B6-SS-1030 |  |  |  | 2.5d | 0d | Painter [112 h]; Construction Cost [23161] | 23,161.04 |  | 1 | 05 | 02 | 01 | H1.C.A1.SA.FI.G.0730 |  |  |  |  |  |  |
| DAM3-C-B6-SS-1060 |  | Epoxy paint for external platform | 5d | 2026-10-13 | 2026-10-18 | DAM3-C-B6-SS-1050 |  |  |  | 4.5d | 0d | Painter [80 h]; Construction Cost [3734.16] | 3,734.16 |  | 1 | 05 | 02 | 01 | H1.C.A1.SA.FI.G.0730 |  |  |  |  |  |  |

| ID | WBS | Activity | Duration | Start | Finish | Predecessors | Complete | Planned start | Planned finish | Total float | Free float | Resources | Cost | Actual cost | Phasing Code Category | Discipline | Project component code | Zone # | 00 Activity ID |
| --- | --- | --- | --- | --- | --- | --- | --- | --- | --- | --- | --- | --- | --- | --- | --- | --- | --- | --- | --- |
|  | 2 | **ARCHITECTURAL** |  | 2026-08-15 | 2027-01-06 |  |  |  |  |  |  |  |  |  |  |  |  |  |  |
|  | 1 | **MASONARY WORKS** |  | 2026-08-29 | 2026-09-15 |  |  |  |  |  |  |  |  |  |  |  |  |  |  |
| DAM3-C-B6-A-170 |  | Block work at factory area | 10d | 2026-08-29 A | 2026-09-07 A | DAM3-C-B6-S-577, DAM3-C-B6-SS-160, DAM3-E-SA-A-830, DAM3-E-SA-A-840, DAM3-E-SA-A-860, DAM3-E-SA-A-870, DAM3-E-MT-A-2020, DAM3-P-ST-A-200 | 100% | 2026-09-10 | 2026-09-21 |  |  | AAC panel erector [240 h]; General Labour [240 h]; Equipment Operator [240 h]; Mobile Crane [120 h]; Construction Cost [58338.7] | 58,338.72 | 58,338.72 | 05 | 03 | 01 |  |  |
| DAM3-C-B6-A-200 |  | Block work at office area | 7d | 2026-08-30 A | 2026-09-09 A | DAM3-C-B6-A-170, DAM3-C-B6-SS-1030, DAM3-C-B6-SS-1060, DAM3-C-B6-SS-1040, DAM3-C-B6-SS-1020 | 100% | 2026-10-06 | 2026-10-13 |  |  | AAC panel erector [160 h]; General Labour [160 h]; Mobile Crane [56 h]; Equipment Operator [160 h]; Construction Cost [6179.18] | 6,179.18 | 6,179.18 | 05 | 03 | 01 |  |  |
| DAM3-C-B6-A-620 |  | Block work at toilet area | 7d | 2026-08-31 A | 2026-09-15 A | DAM3-C-B6-A-200 | 100% | 2026-10-14 | 2026-10-21 |  |  | Mason [112 h]; Construction Cost [14436.3] | 14,436.31 | 14,436.31 | 05 | 03 | 01 | 1 |  |
|  | 5 | **WALL FINISHES** |  | 2026-10-29 | 2026-12-14 |  |  |  |  |  |  |  |  |  |  |  |  |  |  |
| DAM3-C-B6-A-630 |  | Internal Wall Plaster | 15d | 2026-10-29 | 2026-11-15 | DAM3-C-B6-A-620, DAM3-C-B6-E-413, DAM3-E-SA-A-1170, DAM3-E-SA-A-880, DAM3-C-B6-S-757 |  |  |  | 2.5d | 0d | Mason [240 h]; Construction Cost [48590.2] | 48,590.16 |  | 05 | 03 | 01 | 1 | H1.C.A1.SA.FI.G.0710 |
| DAM3-C-B6-A-680 |  | Paint to Plaster (Primer, Putty & First Coat) | 7d | 2026-12-07 | 2026-12-14 | DAM3-C-B6-A-700, DAM3-P-ST-A-320 |  |  |  | 4.1d | 0d | Painter [112 h]; Construction Cost [44167.3] | 44,167.3 |  | 05 | 03 | 01 | 1 | H1.C.A1.SA.FI.G.0730 |
|  | 2 | **CIELING FINISHES** |  | 2026-11-29 | 2026-12-03 |  |  |  |  |  |  |  |  |  |  |  |  |  |  |
| DAM3-C-B6-A-690 |  | Installation of Ceiling Gypsum Board | 5d | 2026-11-29 | 2026-12-03 | DAM3-C-B6-A-670, DAM3-C-B6-S-757, DAM3-E-SA-A-890, DAM3-P-ST-A-330, DAM3-E-ST-E-0230, DAM3-P-ST-E-280, DAM3-P-ST-E-270 |  |  |  | 2.5d | 0d | Carperter [80 h]; Construction Cost [46792.3] | 46,792.3 |  | 05 | 03 | 01 | 1 | H1.C.A1.SA.FI.G.0820 |
|  | 6 | **FLOOR FINISHES** |  | 2026-11-21 | 2027-01-06 |  |  |  |  |  |  |  |  |  |  |  |  |  |  |
| DAM3-C-B6-A-670 |  | Tiles for Toilet | 7d | 2026-11-21 | 2026-11-28 | DAM3-C-B6-A-810, DAM3-E-SA-A-900, DAM3-E-SA-A-910, DAM3-P-ST-A-280, DAM3-C-B6-SS-190 |  |  |  | 2.5d | 0d | Tile Fixer [112 h]; Construction Cost [46530.7] | 46,530.71 |  | 05 | 03 | 01 | 1 | H1.C.A1.SA.FI.G.0640 |
| DAM3-C-B6-A-700 |  | Tiles for Office Area | 2d | 2026-12-05 | 2026-12-06 | DAM3-C-B6-A-690 |  |  |  | 2.5d | 0d | Tile Fixer [32 h]; Construction Cost [26867.3] | 26,867.31 |  | 05 | 03 | 01 |  |  |
| DAM3-C-B6-A-830 |  | Granite strip | 2d | 2026-12-07 | 2026-12-08 | DAM3-C-B6-A-700, DAM3-P-ST-A-290 |  |  |  | 2.5d | 0d | Tile Fixer [32 h]; Construction Cost [671.12] | 671.12 |  | 05 | 03 | 01 | 1 | H1.C.A1.SA.FI.G.0640 |
| DAM3-C-B6-A-850 |  | Epoxy paint | 5d | 2027-01-02 | 2027-01-06 | DAM3-C-B6-A-790, DAM3-C-B6-A-960, DAM3-P-ST-A-310 |  |  |  | 2.5d | 0d | Painter [112 h]; Construction Cost [115420] | 115,419.76 |  | 05 | 03 | 01 |  |  |
|  | 3 | **DOORS & WINDOWS** |  | 2026-10-21 | 2026-11-08 |  |  |  |  |  |  |  |  |  |  |  |  |  |  |
| DAM3-C-B6-A-1010 |  | Window (CW1) | 7d | 2026-10-21 | 2026-10-28 | DAM3-C-B6-SS-180, DAM3-P-ST-A-190 |  |  |  | 7d | 0d | Carperter [112 h]; Construction Cost [94173.2] | 94,173.21 |  | 05 | 03 | 01 |  |  |
| DAM3-C-B6-A-640 |  | Roll up Shutter Door | 1d | 2026-10-29 | 2026-10-29 | DAM3-C-B6-A-1010, DAM3-E-SA-A-920, DAM3-E-SA-A-930, DAM3-E-SA-A-940, DAM3-P-ST-A-180 |  |  |  | 7d | 0d | Carperter [16 h]; Construction Cost [68619.2] | 68,619.2 |  | 05 | 03 | 01 |  |  |
| DAM3-C-B6-A-650 |  | Supply and install (D5) 1000*2200mm single leaf steel door with door | 1d | 2026-10-31 | 2026-10-31 | DAM3-C-B6-A-640 |  |  |  | 7d | 0d | Carperter [16 h]; Construction Cost [16016.2] | 16,016.16 |  | 05 | 03 | 01 |  |  |
| DAM3-C-B6-A-710 |  | Supply and install (D4) 800*2200 mm single leaf aluminum door with door | 1d | 2026-11-01 | 2026-11-01 | DAM3-C-B6-A-650 |  |  |  | 7d | 0d | Carperter [16 h]; Construction Cost [22737.8] | 22,737.85 |  | 05 | 03 | 01 |  |  |
| DAM3-C-B6-A-720 |  | Supply and install (D7) 1000*2200 mm single leaf aluminum door with door | 1d | 2026-11-02 | 2026-11-02 | DAM3-C-B6-A-710 |  |  |  | 7d | 0d | Carperter [16 h]; Construction Cost [7811.07] | 7,811.07 |  | 05 | 03 | 01 |  |  |
| DAM3-C-B6-A-940 |  | Supply and install (D3) 1000*2200 mm single leaf aluminum door with door | 1d | 2026-11-03 | 2026-11-03 | DAM3-C-B6-A-720 |  |  |  | 7d | 0d | Carperter [16 h]; Construction Cost [16016.2] | 16,016.16 |  | 05 | 03 | 01 |  |  |
| DAM3-C-B6-A-950 |  | Supply and install fire rated 45 min (D2) 1200*2200 mm single leaf steel door | 1d | 2026-11-04 | 2026-11-04 | DAM3-C-B6-A-940, DAM3-P-DL-E-210 |  |  |  | 7d | 0d | Carperter [16 h]; Construction Cost [16711.5] | 16,711.52 |  | 05 | 03 | 01 |  |  |
| DAM3-C-B6-A-960 |  | Skylight fixtures installation | 3d | 2026-11-05 | 2026-11-08 | DAM3-C-B6-A-950, DAM3-E-SA-A-850 |  |  |  | 8.5d | 6d | Carperter [112 h]; Construction Cost [6489.89] | 6,489.89 |  | 05 | 03 | 01 |  |  |

| ID | WBS | Activity | Duration | Start | Finish | Predecessors | Complete | Planned start | Planned finish | Total float | Free float | Resources | Cost | Actual cost | Phasing Code Category | Discipline | Project component code | Ordinal Start | Ordinal Finish | 00 Activity ID | Ordinal Duration | Zone # |
| --- | --- | --- | --- | --- | --- | --- | --- | --- | --- | --- | --- | --- | --- | --- | --- | --- | --- | --- | --- | --- | --- | --- |
|  | 4 | **WATER PROOFING WORKS** |  | 2026-11-16 | 2026-11-19 |  |  |  |  |  |  |  |  |  |  |  |  |  |  |  |  |  |
| DAM3-C-B6-A-810 |  | Waterproofing membrane for toilets | 4d | 2026-11-16 | 2026-11-19 | DAM3-C-B6-M-510, DAM3-C-B6-A-630, DAM3-C-B6-A-960 |  |  |  | 2.5d | 0d | General Labour [64 h]; Construction Cost [4879.02] | 4,879.02 |  | 05 | 03 | 01 |  |  |  |  |  |
|  | 7 | **METAL WORKS** |  | 2026-08-15 | 2026-12-21 |  |  |  |  |  |  |  |  |  |  |  |  |  |  |  |  |  |
| DAM3-C-B6-A-750 |  | Galvanised Steel Gratings | 2d | 2026-08-15 A | 2026-08-15 A | DAM3-C-B6-A-760, DAM3-P-ST-A-220 | 100% | 2026-11-28 | 2026-11-29 |  |  | Steel Fixer [32 h]; General Labour [32 h]; Construction Cost [6455.16] | 6,455.16 | 6,455.16 | 05 | 03 | 01 |  |  |  |  |  |
| DAM3-C-B6-A-740 |  | Steel Ladder | 2d | 2026-12-09 | 2026-12-10 | DAM3-C-B6-A-830, DAM3-P-ST-A-210 |  |  |  | 2.5d | 0d | Steel Fixer [32 h]; General Labour [32 h]; Construction Cost [9839.16] | 9,839.16 |  | 05 | 03 | 01 |  |  |  |  |  |
| DAM3-C-B6-A-840 |  | Steel railing works | 4d | 2026-12-12 | 2026-12-15 | DAM3-C-B6-A-740, DAM3-P-ST-A-230 |  |  |  | 2.5d | 0d | Steel Fixer [64 h]; General Labour [64 h]; Construction Cost [1533.98] | 1,533.98 |  | 05 | 03 | 01 |  |  |  |  |  |
| DAM3-C-B6-A-760 |  | Aluminium composite panel | 5d | 2026-12-16 | 2026-12-21 | DAM3-C-B6-A-840, DAM3-E-ST-A-1720 |  |  |  | 2.5d | 0d | Steel Fixer [80 h]; General Labour [80 h]; Construction Cost [175889] | 175,888.76 |  | 05 | 03 | 01 |  |  |  |  |  |
|  | 8 | **SPECIALTIES** |  | 2026-12-22 | 2026-12-31 |  |  |  |  |  |  |  |  |  |  |  |  |  |  |  |  |  |
| DAM3-C-B6-A-770 |  | Installation of fittings | 5d | 2026-12-22 | 2026-12-27 | DAM3-C-B6-A-750, DAM3-P-ST-M-570 |  |  |  | 2.5d | 0d | Plumber [80 h]; Construction Cost [22981.3] | 22,981.27 |  | 05 | 03 | 01 |  |  |  |  |  |
| DAM3-C-B6-A-1000 |  | Identification sign; ID01 & ID02 | 3d | 2026-12-28 | 2026-12-30 | DAM3-C-B6-A-770, DAM3-E-SA-A-950, DAM3-E-SA-A-960, DAM3-E-ST-A-1760 |  |  |  | 2.5d | 0d | Mason [48 h]; Construction Cost [9630.56] | 9,630.56 |  | 05 | 03 | 01 |  |  |  |  |  |
| DAM3-C-B6-A-790 |  | Furniture Installation | 1d | 2026-12-31 | 2026-12-31 | DAM3-C-B6-A-1000 |  |  |  | 2.5d | 0d | General Labour [16 h]; Mason [16 h]; Construction Cost [12468.8] | 12,468.83 |  | 05 | 03 | 01 |  |  |  |  |  |
|  | 3 | **MECHANICAL** |  | 2026-07-14 | 2027-01-06 |  |  |  |  |  |  |  |  |  |  |  |  |  |  |  |  |  |
|  | 1 | **HVAC** |  | 2026-12-15 | 2027-01-03 |  |  |  |  |  |  |  |  |  |  |  |  |  |  |  |  |  |
|  | 1 | **FIRST STAGE** |  | 2026-12-22 | 2026-12-26 |  |  |  |  |  |  |  |  |  |  |  |  |  |  |  |  |  |
| DAM3-C-B6-M-450 |  | Installation of HVAC Ducts | 2d | 2026-12-22 | 2026-12-23 | DAM3-C-B6-M-470, DAM3-E-SA-M-730, DAM3-E-SA-M-740, DAM3-P-ST-M-600, DAM3-P-ST-M-610 |  |  |  | 17.2d | 0d | Ductman [32 h]; Construction Cost [149489] | 149,489.33 |  | 05 | 04 | 01 | 0 | 0 | H1.C.A1.0A.MH.G.1040 | 0 | 1 |
| DAM3-C-B6-M-480 |  | Installation of Duct insulation | 2d | 2026-12-24 | 2026-12-26 | DAM3-C-B6-M-450 |  |  |  | 17.2d | 0d | Ductman [32 h]; Construction Cost [21205.4] | 21,205.4 |  | 05 | 04 | 01 |  |  |  |  |  |
|  | 2 | **SECOND STAGE** |  | 2026-12-15 | 2027-01-03 |  |  |  |  |  |  |  |  |  |  |  |  |  |  |  |  |  |
| DAM3-C-B6-M-440 |  | Installation of Exhaust Fans | 2d | 2026-12-15 | 2026-12-16 | DAM3-C-B6-A-680, DAM3-P-ST-M-590 |  |  |  | 17.2d | 0d | AC Technician [32 h]; Construction Cost [7938.56] | 7,938.56 |  | 05 | 04 | 01 | 0 | 0 | H1.C.A1.0A.MH.X.4050 | 0 | 1 |
| DAM3-C-B6-M-470 |  | Installation of Wall Propeller Type Exhaust Fan | 4d | 2026-12-17 | 2026-12-21 | DAM3-C-B6-M-440, DAM3-E-SA-M-750, DAM3-E-SA-M-760, DAM3-P-ST-M-370 |  |  |  | 17.2d | 0d | AC Technician [64 h]; Construction Cost [46831.6] | 46,831.64 |  | 05 | 04 | 01 |  |  |  |  |  |
| DAM3-C-B6-M-460 |  | Installation of Diffuser | 2d | 2026-12-27 | 2026-12-28 | DAM3-C-B6-M-480, DAM3-P-ST-M-620 |  |  |  | 17.2d | 3d | Ductman [32 h]; Construction Cost [2144] | 2,144 |  | 05 | 04 | 01 | 0 | 0 | H1.C.A1.0A.MH.G.3010 | 0 | 1 |
| DAM3-C-B6-M-650 |  | Supply, install, test and commission door grilles & exhaust louvers | 2d | 2027-01-02 | 2027-01-03 | DAM3-C-B6-M-460, DAM3-C-B6-A-790 |  |  |  | 14.2d | 0d | Ductman [32 h]; Construction Cost [5574.4] | 5,574.4 |  | 05 | 04 | 01 | 0 | 0 | H1.C.A1.0A.MH.G.3010 | 0 | 1 |
|  | 2 | **FIRE FIGHTING SYSTEM** |  | 2026-12-15 | 2027-01-06 |  |  |  |  |  |  |  |  |  |  |  |  |  |  |  |  |  |
|  | 1 | **FIRST STAGE** |  | 2026-12-15 | 2026-12-28 |  |  |  |  |  |  |  |  |  |  |  |  |  |  |  |  |  |
| DAM3-C-B6-M-610 |  | Installation of Fire Fighting Pipes (Seamless Black Steel) | 7d | 2026-12-15 | 2026-12-22 | DAM3-C-B6-A-680, DAM3-E-SA-M-770, DAM3-E-SA-M-790, DAM3-E-SA-M-800, DAM3-E-SA-M-780, DAM3-P-ST-M-340 |  |  |  | 7.5d | 0d | Pipe Fitter [112 h]; Construction Cost [72394.8] | 72,394.75 |  | 05 | 04 | 01 | 0 | 0 | H1.C.A1.0A.MF.G.1010 | 0 | 1 |
| DAM3-C-B6-M-620 |  | Installation of Fire Fighting Valve | 5d | 2026-12-23 | 2026-12-28 | DAM3-C-B6-M-610, DAM3-P-ST-M-390, DAM3-P-ST-M-460, DAM3-P-ST-M-450, DAM3-P-ST-M-440 |  |  |  | 7.5d | 0d | Pipe Fitter [80 h]; Construction Cost [12199.4] | 12,199.4 |  | 05 | 04 | 01 | 0 | 0 | H1.C.A1.0A.MF.G.2010 | 0 | 1 |

| ID | WBS | Activity | Duration | Start | Finish | Predecessors | Complete | Remaining | Planned start | Planned finish | Total float | Free float | Resources | Cost | Actual cost | Ordinal Start | Ordinal Finish | 00 Activity ID | Ordinal Duration | Zone # | Phasing Code Category | Discipline | Project component code |
| --- | --- | --- | --- | --- | --- | --- | --- | --- | --- | --- | --- | --- | --- | --- | --- | --- | --- | --- | --- | --- | --- | --- | --- |
|  | 2 | **SECOND STAGE** |  | 2026-12-29 | 2027-01-06 |  |  |  |  |  |  |  |  |  |  |  |  |  |  |  |  |  |  |
| DAM3-C-B6-M-630 |  | Installation of Fire Hose Cabinet | 3d | 2026-12-29 | 2026-12-31 | DAM3-C-B6-M-620, DAM3-P-ST-M-350 |  |  |  |  | 7.5d | 5d | Pipe Fitter [48 h]; Construction Cost [15158.6] | 15,158.56 |  | 0 | 0 | H1.C.A1.0A.MF.G.3010 | 0 | 1 | 05 | 04 | 01 |
| DAM3-C-B6-M-680 |  | Supply, install, test and commission Fire Department Connection(FDC) | 3d | 2027-01-04 | 2027-01-06 | DAM3-C-B6-M-650 |  |  |  |  | 14.2d | 7d | Pipe Fitter [48 h]; Construction Cost [2706.06] | 2,706.06 |  | 0 | 0 | H1.C.A1.0A.MF.G.3010 | 0 | 1 | 05 | 04 | 01 |
|  | 3 | **SEWER AND DRAINAGE SYSTEM** |  | 2026-07-14 | 2026-12-16 |  |  |  |  |  |  |  |  |  |  |  |  |  |  |  |  |  |  |
|  | 1 | **FIRST STAGE** |  | 2026-07-14 | 2026-11-30 |  |  |  |  |  |  |  |  |  |  |  |  |  |  |  |  |  |  |
| DAM3-C-B6-M-510 |  | Installation of Sanitary Waste / Drainage Pipes | 4d | 2026-07-14 A | 2026-07-18 A | DAM3-C-B6-S-717, DAM3-E-SA-M-600, DAM3-E-SA-M-610, DAM3-E-SA-M-650, DAM3-E-MT-M-2030 | 100% |  | 2026-07-29 | 2026-08-02 |  |  | Plumber [64 h]; Construction Cost [18585.1] | 18,585.14 | 18,585.14 | 0 | 0 | H1.C.K1.00.MP.G.1020 | 0 | 1 | 05 | 04 | 01 |
| DAM3-C-B6-M-690 |  | Installation of Trench drain | 5d | 2026-07-15 A | 2026-07-18 A | DAM3-C-B6-M-530 | 100% |  | 2026-10-25 | 2026-10-29 |  |  | Plumber [80 h]; Construction Cost [11508.8] | 11,508.8 | 11,508.8 |  |  |  |  |  | 05 | 04 | 01 |
| DAM3-C-B6-M-530 |  | Installation of Floor Drain | 2d | 2026-11-29 | 2026-11-30 | DAM3-C-B6-M-510, DAM3-C-B6-A-670, DAM3-E-SA-M-620, DAM3-P-ST-M-530 |  |  |  |  | 11d | 0d | Plumber [32 h]; Construction Cost [11056] | 11,055.96 |  |  |  |  |  | 1 | 05 | 04 | 01 |
|  | 2 | **SECOND STAGE** |  | 2026-12-01 | 2026-12-16 |  |  |  |  |  |  |  |  |  |  |  |  |  |  |  |  |  |  |
| DAM3-C-B6-M-490 |  | Installation of Electric Water Heater | 2d | 2026-12-01 | 2026-12-02 | DAM3-C-B6-M-690, DAM3-P-ST-M-550 |  |  |  |  | 11d | 0d | Plumber [32 h]; Construction Cost [1819.51] | 1,819.51 |  | 0 | 0 | H1.C.K1.00.MP.G.1030 | 0 | 1 | 05 | 04 | 01 |
| DAM3-C-B6-M-500 |  | Installation of Sanitary Fixture and Accessories | 4d | 2026-12-03 | 2026-12-07 | DAM3-C-B6-M-490, DAM3-P-ST-M-360 |  |  |  |  | 11d | 0d | Plumber [64 h]; Construction Cost [19921.7] | 19,921.72 |  | 0 | 0 | H1.C.K1.00.MP.G.2040 | 0 | 1 | 05 | 04 | 01 |
| DAM3-C-B6-M-520 |  | Installation of Lavotary /Wash Basin | 2d | 2026-12-08 | 2026-12-09 | DAM3-C-B6-M-490, DAM3-C-B6-M-500, DAM3-P-ST-M-580 |  |  |  |  | 11d | 0d | Plumber [32 h]; Construction Cost [21416.7] | 21,416.68 |  |  |  |  |  | 1 | 05 | 04 | 01 |
| DAM3-C-B6-M-580 |  | Installation of Bib Tap | 2d | 2026-12-10 | 2026-12-12 | DAM3-C-B6-M-500, DAM3-C-B6-M-520, DAM3-P-ST-M-560 |  |  |  |  | 11d | 0d | Plumber [32 h]; Construction Cost [1900.66] | 1,900.66 |  |  |  |  |  |  | 05 | 04 | 01 |
| DAM3-C-B6-M-540 |  | Installation of Water Tap | 2d | 2026-12-13 | 2026-12-14 | DAM3-C-B6-M-520, DAM3-C-B6-M-580, DAM3-E-ST-M-3410 |  |  |  |  | 11d | 0d | Plumber [32 h]; Construction Cost [2874.14] | 2,874.14 |  |  |  |  |  |  | 05 | 04 | 01 |
| DAM3-C-B6-M-550 |  | Installation of Roof Vent Cap | 2d | 2026-12-15 | 2026-12-16 | DAM3-C-B6-M-540, DAM3-P-ST-M-520 |  |  |  |  | 11d | 0d | Pipe Fitter [32 h]; Construction Cost [927.12] | 927.12 |  |  |  |  |  |  | 05 | 04 | 01 |
|  | 4 | **WATER SUPPLY SYSTEM** |  | 2026-10-03 | 2026-12-17 |  |  |  |  |  |  |  |  |  |  |  |  |  |  |  |  |  |  |
|  | 1 | **FIRST STAGE** |  | 2026-10-03 | 2026-10-07 |  |  |  |  |  |  |  |  |  |  |  |  |  |  |  |  |  |  |
| DAM3-C-B6-M-590 |  | Installation of Water Supply Valve | 2d | 2026-10-03 A | 2026-10-07 A | DAM3-C-B6-M-600, DAM3-E-SA-M-670, DAM3-E-SA-M-680, DAM3-E-SA-M-690, DAM3-P-ST-M-490, DAM3-P-ST-M-420 | 100% |  | 2026-12-22 | 2026-12-23 |  |  | Plumber [32 h]; Construction Cost [18274.3] | 18,274.27 | 18,274.27 | 0 | 0 | H1.C.K1.00.MP.G.2010 | 0 | 1 | 05 | 04 | 01 |
| DAM3-C-B6-M-600 |  | Installation of Water Supply Pipes | 4d | 2026-10-03 A | 2026-10-07 A | DAM3-C-B6-A-680, DAM3-E-SA-M-630, DAM3-E-SA-M-640, DAM3-E-SA-M-660, DAM3-P-ST-M-480 | 100% |  | 2026-12-17 | 2026-12-21 |  |  | Plumber [64 h]; Construction Cost [23318.4] | 23,318.41 | 23,318.41 | 0 | 0 | H1.C.K1.00.MP.G.1010 | 0 | 1 | 05 | 04 | 01 |
|  | 2 | **SECOND STAGE** |  | 2026-12-15 | 2026-12-17 |  |  |  |  |  |  |  |  |  |  |  |  |  |  |  |  |  |  |
| DAM3-C-B6-M-640 |  | Capped connection | 3d | 2026-12-15 | 2026-12-17 | DAM3-C-B6-M-590, DAM3-P-ST-M-500 |  |  |  |  | 12.1d | 8d | Plumber [80 h]; Construction Cost [278.13] | 278.13 |  |  |  |  |  |  | 05 | 04 | 01 |
|  | 4 | **ELECTRICAL** |  | 2026-06-08 | 2027-01-19 |  |  |  |  |  |  |  |  |  |  |  |  |  |  |  |  |  |  |
|  | 1 | **FIRST STAGE** |  | 2026-06-08 | 2027-01-06 |  |  |  |  |  |  |  |  |  |  |  |  |  |  |  |  |  |  |
| DAM3-C-B6-E-343 |  | Installation of Earthing and Grounding | 4d | 2026-06-08 A | 2026-10-13 | DAM3-E-SA-E-1050, DAM3-E-SA-E-1060, DAM3-E-SA-E-1070, DAM3-P-ST-E-340 | 90% | 0.4d | 2026-10-04 | 2026-10-07 | 40.6d | 19.6d | Electrician [64 h]; Construction Cost [19646.5] | 19,646.47 | 17,681.82 |  |  | H1.C.K1.00.EM.G.2040 |  | 1 | 05 | 05 | 01 |
| DAM3-C-B6-E-413 |  | Installation of Sleeves & Power outlet | 8d | 2026-06-08 A | 2026-10-17 | DAM3-E-SA-E-940, DAM3-E-SA-E-950, DAM3-E-SA-E-960, DAM3-E-SA-E-970, DAM3-E-MT-E-2040, DAM3-P-ST-E-310 | 50% | 4d | 2026-07-07 | 2026-07-15 | 12.5d | 10d | Electrician [128 h]; Construction Cost [2920.45] | 2,920.45 | 1,460.23 |  |  |  |  | 1 | 05 | 05 | 01 |
| DAM3-C-B6-E-373 |  | Installation of Conduits and wiring outlets - Fire Alarm System | 4d | 2026-06-09 A | 2026-12-23 | DAM3-C-B6-E-433 | 50% | 2d | 2026-11-23 | 2026-11-26 | 4.1d | 0d | Electrician [64 h]; Construction Cost [1768.31] | 1,768.31 | 884.15 |  |  | H1.C.K1.00.EL.G.1020 |  | 1 | 05 | 05 | 01 |
| DAM3-C-B6-E-393 |  | Installation of Conduites for Lighting Fixture | 4d | 2026-10-01 A | 2027-01-02 | DAM3-C-B6-E-363, DAM3-E-SA-E-990, DAM3-E-SA-E-1000 | 90% | 0.4d | 2027-01-07 | 2027-01-11 | 4.1d | 0d | Electrician [64 h]; Construction Cost [8462.97] | 8,462.97 | 7,616.67 |  |  | H1.C.K1.00.EM.G.2030 |  | 1 | 05 | 05 | 01 |
| DAM3-C-B6-E-453 |  | Installation of LV Cables | 4d | 2026-10-13 | 2026-10-17 | DAM3-P-ST-E-290 |  |  |  |  | 52d | 11d | Electrician [64 h]; Construction Cost [36390] | 36,389.98 |  |  |  |  |  |  | 05 | 05 | 01 |
| DAM3-C-B6-E-463 |  | Installation of Wires | 4d | 2027-01-02 | 2027-01-06 | DAM3-C-B6-E-393, DAM3-P-ST-E-320 |  |  |  |  | 4.1d | 0d | Electrician [64 h]; Construction Cost [16925.9] | 16,925.94 |  |  |  |  |  |  | 05 | 05 | 01 |

| ID | WBS | Activity | Duration | Start | Finish | Predecessors | Complete | Planned start | Planned finish | Total float | Free float | Resources | Cost | Actual cost | 00 Activity ID | Zone # | Phasing Code Category | Discipline | Project component code | AMH Tender Act. ID | Tender Original Duration |
| --- | --- | --- | --- | --- | --- | --- | --- | --- | --- | --- | --- | --- | --- | --- | --- | --- | --- | --- | --- | --- | --- |
|  | 2 | **SECOND STAGE** |  | 2026-10-13 | 2027-01-19 |  |  |  |  |  |  |  |  |  |  |  |  |  |  |  |  |
| DAM3-C-B6-E-503 |  | Installation of Access Control System | 4d | 2026-10-13 | 2026-10-17 | DAM3-E-SA-E-1010, DAM3-E-SA-E-1100, DAM3-E-ST-E-0240 |  |  |  | 69.5d | 0d | Electrician [64 h]; Construction Cost [27616.9] | 27,616.86 |  | H1.C.K1.00.EM.G.2040 | 1 | 05 | 05 | 01 |  |  |
| DAM3-C-B6-E-730 |  | Installation of Solar power plant | 7d | 2026-10-13 | 2026-10-20 | DAM3-E-SA-E-980, DAM3-E-ST-E-0250 |  |  |  | 39.5d | 0d | Plumber [112 h]; Construction Cost [253269] | 253,268.71 |  |  |  | 05 | 05 | 01 |  |  |
| DAM3-C-B6-E-513 |  | Monitor Modules for Fire Alarm | 2d | 2026-10-18 | 2026-10-19 | DAM3-C-B6-E-503, DAM3-E-SA-E-1110, DAM3-E-SA-E-1120 |  |  |  | 69.5d | 0d | Electrician [32 h]; Construction Cost [3882.38] | 3,882.38 |  | H1.C.K1.00.EM.G.2040 | 1 | 05 | 05 | 01 |  |  |
| DAM3-C-B6-E-523 |  | Line Isolator Modules for Fire Alarm | 2d | 2026-10-20 | 2026-10-21 | DAM3-C-B6-E-513 |  |  |  | 69.5d | 0d | Electrician [32 h]; Construction Cost [185.4] | 185.4 |  | H1.C.K1.00.EM.G.2040 | 1 | 05 | 05 | 01 |  |  |
| DAM3-C-B6-E-533 |  | Firewarning flash light with sounder; wall mounted, Weather proof | 2d | 2026-10-20 | 2026-10-21 | DAM3-C-B6-E-523 SS |  |  |  | 69.5d | 50d | Electrician [32 h]; Construction Cost [3082.69] | 3,082.69 |  | H1.C.K1.00.EM.G.2040 | 1 | 05 | 05 | 01 |  |  |
| DAM3-C-B6-E-403 |  | Installation of Wiring Devices | 4d | 2026-12-15 | 2026-12-19 | DAM3-C-B6-E-413, DAM3-C-B6-A-680, DAM3-P-ST-E-350 |  |  |  | 4.1d | 0d | Electrician [64 h]; Construction Cost [19435.1] | 19,435.09 |  | H1.C.K1.00.EM.G.3020 | 1 | 05 | 05 | 01 |  |  |
| DAM3-C-B6-E-433 |  | Installation of Disconnect Switches | 2d | 2026-12-20 | 2026-12-21 | DAM3-C-B6-E-403, DAM3-P-ST-E-300 |  |  |  | 4.1d | 0d | Electrician [32 h]; Construction Cost [30236] | 30,235.95 |  |  |  | 05 | 05 | 01 |  |  |
| DAM3-C-B6-E-353 |  | Installation of Fire Alarm Control Panel | 3d | 2026-12-24 | 2026-12-27 | DAM3-C-B6-E-373, DAM3-E-SA-E-1020, DAM3-P-ST-E-250 |  |  |  | 4.1d | 0d | Electrician [64 h]; Construction Cost [19451.4] | 19,451.37 |  | H1.C.K1.00.EL.X.4120 | 1 | 05 | 05 | 01 |  |  |
| DAM3-C-B6-E-363 |  | Installation of Fire Detectors & Accessories | 4d | 2026-12-28 | 2026-12-31 | DAM3-C-B6-E-353, DAM3-E-SA-E-1080, DAM3-C-B6-M-640 |  |  |  | 4.1d | 0d | Electrician [64 h]; Construction Cost [56740.4] | 56,740.37 |  | H1.C.K1.00.EL.G.3020 | 1 | 05 | 05 | 01 |  |  |
| DAM3-C-B6-E-383 |  | Installation of Lighting fixtures | 2d | 2027-01-06 | 2027-01-09 | DAM3-C-B6-E-463, DAM3-P-ST-E-200, DAM3-P-ST-E-210, DAM3-P-ST-E-220, DAM3-P-ST-E-230, DAM3-P-ST-E-240 |  |  |  | 4.1d | 0d | Electrician [64 h]; Construction Cost [76166.7] | 76,166.74 |  | H1.C.K1.00.EM.G.3010 | 1 | 05 | 05 | 01 |  |  |
| DAM3-C-B6-E-423 |  | Installation of Main Distribution Board | 2d | 2027-01-09 | 2027-01-11 | DAM3-C-B6-E-383, DAM3-P-ST-E-190 |  |  |  | 4.1d | 0d | Electrician [32 h]; Construction Cost [32472.7] | 32,472.73 |  | H1.C.K1.00.EM.G.2020 | 1 | 05 | 05 | 01 |  |  |
| DAM3-C-B6-E-473 |  | Installation of LP-1 Panel | 2d | 2027-01-11 | 2027-01-13 | DAM3-C-B6-E-423, DAM3-E-ST-E-190 |  |  |  | 4.1d | 0d | Electrician [32 h]; Construction Cost [18403.5] | 18,403.54 |  | H1.C.K1.00.EM.G.2020 | 1 | 05 | 05 | 01 |  |  |
| DAM3-C-B6-E-483 |  | Installation of PP-AC panel | 2d | 2027-01-13 | 2027-01-16 | DAM3-C-B6-E-473, DAM3-E-ST-E-200 |  |  |  | 4.1d | 0d | Electrician [32 h]; Construction Cost [21648.5] | 21,648.48 |  | H1.C.K1.00.EM.G.2020 | 1 | 05 | 05 | 01 |  |  |
| DAM3-C-B6-E-443 |  | Installation of Telephone Cabinet | 2d | 2027-01-16 | 2027-01-18 | DAM3-C-B6-E-483, DAM3-E-SA-E-1040, DAM3-E-SA-E-1090, DAM3-P-ST-E-330 |  |  |  | 31.8d | 24.6d | Electrician [32 h]; Construction Cost [26991.1] | 26,991.08 |  |  | 1 | 05 | 05 | 01 |  |  |
| DAM3-C-B6-E-720 |  | Installation of CCTV System | 3d | 2027-01-16 | 2027-01-19 | DAM3-C-B6-E-483, DAM3-E-SA-E-1030, DAM3-E-ST-E-0230 |  |  |  | 4.1d | 0d | Plumber [112 h]; Construction Cost [76349.2] | 76,349.24 |  |  |  | 05 | 05 | 01 |  |  |
|  | 8 | **BLOCK B5** |  | 2026-02-16 | 2026-12-27 |  |  |  |  |  |  |  |  |  |  |  |  |  |  |  |  |
|  | 1 | **STRUCTURAL** |  | 2026-02-16 | 2026-10-20 |  |  |  |  |  |  |  |  |  |  |  |  |  |  |  |  |
|  | 1 | **FOOTING** |  | 2026-02-16 | 2026-05-05 |  |  |  |  |  |  |  |  |  |  |  |  |  |  |  |  |
| DAM3-C-B5-S-250 |  | Excavation for footings | 4d | 2026-02-16 A | 2026-03-18 A | DAM3-C-B6-S-160 | 100% | 2026-03-14 | 2026-03-22 |  |  | General Labour [112 h]; Equipment Operator [112 h]; Truck [32 h]; Excavator [32 h]; Mini Roller Compactor [32 h]; Construction Cost [89859.6] | 89,859.61 | 89,859.61 | H1.C.K1.00.SW.F.1010 | 1 | 05 | 01 | 02 | PH1-MHR-ST-640 | 12 |
| DAM3-C-B5-S-6163 |  | Soil replacement - rock fill | 4d | 2026-03-30 A | 2026-04-02 A | DAM3-C-B5-S-250 | 100% | 2026-04-05 | 2026-04-08 |  |  | General Labour [256 h]; Truck [128 h]; Mini Roller Compactor [128 h]; Equipment Operator [256 h]; Wheel Loader [128 h]; Construction Cost [179062] | 179,061.91 | 179,061.91 | H1.C.K1.00.SW.F.1060 | 1 | 05 | 01 | 02 | PH1-MHR-ST-645 | 15 |
| DAM3-C-B5-S-6173 |  | Engineering fill | 4d | 2026-04-07 A | 2026-04-13 A | DAM3-C-B5-S-6163, DAM3-C-B5-S-6163 FF | 100% | 2026-04-14 | 2026-04-18 |  |  | General Labour [256 h]; Truck [64 h]; Mini Roller Compactor [64 h]; Equipment Operator [256 h]; Wheel Loader [64 h]; Construction Cost [46046.2] | 46,046.19 | 46,046.19 | H1.C.K1.00.SW.F.1060 | 1 | 05 | 01 | 02 | PH1-MHR-ST-645 | 15 |
| DAM3-C-B5-S-1057 |  | Lean Concrete Below Footings | 2d | 2026-04-21 A | 2026-04-21 A | DAM3-C-B5-S-1207 | 100% | 2026-04-28 | 2026-04-29 |  |  | Mason [32 h]; Construction Cost [8229.34] | 8,229.34 | 8,229.34 | H1.C.K1.00.SW.F.1030 | 1 | 05 | 01 | 02 | PH1-MHR-ST-1020 | 10 |
| DAM3-C-B5-S-1207 |  | Vapour Barrier for Footings | 1d | 2026-04-21 A | 2026-04-21 A | DAM3-C-B5-S-1297 | 100% | 2026-04-27 | 2026-04-27 |  |  | General Labour [16 h]; Construction Cost [7940.1] | 7,940.1 | 7,940.1 | H1.C.K1.00.SW.F.1040 | 1 | 05 | 01 | 02 | PH1-MHR-ST-1080 | 15 |
| DAM3-C-B5-S-1297 |  | Anti Termite Below Footings | 1d | 2026-04-21 A | 2026-04-21 A | DAM3-C-B5-S-6173 | 100% | 2026-04-26 | 2026-04-26 |  |  | Mason [16 h]; Construction Cost [11905.5] | 11,905.55 | 11,905.55 | H1.C.K1.00.SW.F.1030 | 1 | 05 | 01 | 02 | PH1-MHR-ST-1020 | 10 |
| DAM3-C-B5-S-1107 |  | Rebar for Footings | 4d | 2026-04-28 A | 2026-04-29 A | DAM3-C-B5-S-1057 | 100% | 2026-05-03 | 2026-05-06 |  |  | Steel Fixer [64 h]; Construction Cost [101845] | 101,844.98 | 101,844.98 |  | 1 | 05 | 01 | 02 |  |  |
| DAM3-C-B5-S-1117 |  | Formwork for Footings | 4d | 2026-05-02 A | 2026-05-03 A | DAM3-C-B5-S-1107 | 100% | 2026-05-04 | 2026-05-07 |  |  | Carperter [64 h]; Construction Cost [25461.2] | 25,461.25 | 25,461.25 |  | 1 | 05 | 01 | 02 |  |  |
| DAM3-C-B5-S-1067 |  | Pouring Concrete for Footings | 1d | 2026-05-05 A | 2026-05-05 A | DAM3-C-B5-S-1117 | 100% | 2026-05-07 | 2026-05-07 |  |  | Carperter [16 h]; Mason [16 h]; Steel Fixer [16 h]; Concrete Mixer [8 h]; Equipment Operator [16 h]; Construction Cost [127306] | 127,306.23 | 127,306.23 | H1.C.K1.00.RC.F.1010 | 1 | 05 | 01 | 02 | PH1-MHR-ST-1030 | 21 |

| ID | WBS | Activity | Duration | Start | Finish | Predecessors | Complete | Planned start | Planned finish | Total float | Free float | Resources | Cost | Actual cost | Zone # | Phasing Code Category | Discipline | Project component code | 00 Activity ID | AMH Tender Act. ID | Tender Original Duration | project summary-4 | PS (su & rbf)-4 | New code for weekly report-4 | New discipline code-4 |
| --- | --- | --- | --- | --- | --- | --- | --- | --- | --- | --- | --- | --- | --- | --- | --- | --- | --- | --- | --- | --- | --- | --- | --- | --- | --- |
|  | 2 | **COLUMN NECK** |  | 2026-05-03 | 2026-05-24 |  |  |  |  |  |  |  |  |  |  |  |  |  |  |  |  |  |  |  |  |
| DAM3-C-B5-S-1157 |  | Rebar for column neck | 2d | 2026-05-03 A | 2026-05-05 A | DAM3-C-B5-S-1067 | 100% | 2026-05-07 | 2026-05-09 |  |  | Steel Fixer [32 h]; Construction Cost [14919.2] | 14,919.19 | 14,919.19 | 1 | 05 | 01 | 02 |  |  |  |  |  |  |  |
| DAM3-C-B5-S-1167 |  | Formwork for column neck | 2d | 2026-05-06 A | 2026-05-09 A | DAM3-C-B5-S-1157 | 100% | 2026-05-11 | 2026-05-12 |  |  | Carperter [32 h]; Construction Cost [9946.13] | 9,946.13 | 9,946.13 | 1 | 05 | 01 | 02 |  |  |  |  |  |  |  |
| DAM3-C-B5-S-1147 |  | Pouring Concrete for column neck | 1d | 2026-05-10 A | 2026-05-10 A | DAM3-C-B5-S-1167 | 100% | 2026-05-12 | 2026-05-12 |  |  | Mason [16 h]; Carperter [16 h]; Concrete Mixer [8 h]; Steel Fixer [16 h]; Equipment Operator [16 h]; Construction Cost [24865.3] | 24,865.31 | 24,865.31 | 1 | 05 | 01 | 02 | H1.C.K1.00.RC.F.1110 | PH1-MHR-ST-1030 | 21 |  |  |  |  |
| DAM3-C-B5-S-1197 |  | Damp proof /Bitumin paint on Footings & column neck | 2d | 2026-05-11 A | 2026-05-12 A | DAM3-C-B5-S-1147 | 100% | 2026-05-14 | 2026-05-16 |  |  | Painter [32 h]; Construction Cost [24777.7] | 24,777.73 | 24,777.73 | 1 | 05 | 01 | 02 | H1.C.K1.00.SW.F.1050 | PH1-MHR-ST-1080 | 15 |  |  |  |  |
| DAM3-C-B5-S-1257 |  | Backfilling / Compaction up to Bottom of Grade Beams | 7d | 2026-05-20 A | 2026-05-24 A | DAM3-C-B5-S-1197 | 100% | 2026-05-23 | 2026-06-02 |  |  | General Labour [256 h]; Truck [128 h]; Mini Roller Compactor [128 h]; Equipment Operator [256 h]; Wheel Loader [128 h]; Construction Cost [46046.2] | 46,046.19 | 46,046.19 | 1 | 05 | 01 | 02 | H1.C.K1.00.SW.F.1060 | PH1-MHR-ST-645 | 15 |  |  |  |  |
|  | 3 | **GRADE BEAM** |  | 2026-06-01 | 2026-06-18 |  |  |  |  |  |  |  |  |  |  |  |  |  |  |  |  |  |  |  |  |
| DAM3-C-B5-S-1077 |  | Lean Concrete Below Grade Beams | 2d | 2026-06-01 A | 2026-06-01 A | DAM3-C-B5-S-1227 | 100% | 2026-06-07 | 2026-06-08 |  |  | Mason [32 h]; Construction Cost [4431.19] | 4,431.19 | 4,431.19 | 1 | 05 | 01 | 02 | H1.C.K1.00.SW.F.1130 | PH1-MHR-ST-1020 | 10 |  |  |  |  |
| DAM3-C-B5-S-1227 |  | Vapour barrier for Grade Beams | 2d | 2026-06-01 A | 2026-06-01 A | DAM3-C-B5-S-1307 | 100% | 2026-06-04 | 2026-06-06 |  |  | General Labour [32 h]; Construction Cost [5293.4] | 5,293.4 | 5,293.4 | 1 | 05 | 01 | 02 | H1.C.K1.00.SW.F.1040 | PH1-MHR-ST-1080 | 15 |  |  |  |  |
| DAM3-C-B5-S-1307 |  | Anti Termite Below Grade Beams | 1d | 2026-06-01 A | 2026-06-01 A | DAM3-C-B5-S-1257 | 100% | 2026-06-03 | 2026-06-03 |  |  | Mason [16 h]; Construction Cost [11905.5] | 11,905.55 | 11,905.55 | 1 | 05 | 01 | 02 | H1.C.K1.00.SW.F.1030 | PH1-MHR-ST-1020 | 10 |  |  |  |  |
| DAM3-C-B5-S-1287 |  | Anchor bolts installation | 2d | 2026-06-02 A | 2026-06-04 A | DAM3-C-B5-S-1137 SS | 100% | 2026-06-10 | 2026-06-11 |  |  | Carperter [32 h]; Construction Cost [57238.8] | 57,238.83 | 57,238.83 | 1 | 05 | 01 | 02 |  |  |  |  |  |  |  |
| DAM3-C-B5-S-1127 |  | Rebar for Grade Beams | 5d | 2026-06-03 A | 2026-06-04 A | DAM3-C-B5-S-1077 | 100% | 2026-06-07 | 2026-06-11 |  |  | Steel Fixer [80 h]; Construction Cost [27194.5] | 27,194.46 | 27,194.46 | 1 | 05 | 01 | 02 |  |  |  |  |  |  |  |
| DAM3-C-B5-S-1137 |  | Formwork for Grade Beams | 2d | 2026-06-03 A | 2026-06-07 A | DAM3-C-B5-S-1127 | 100% | 2026-06-10 | 2026-06-11 |  |  | Carperter [32 h]; Construction Cost [6798.61] | 6,798.61 | 6,798.61 | 1 | 05 | 01 | 02 |  |  |  |  |  |  |  |
| DAM3-C-B5-S-1087 |  | Pouring Concrete for Grade Beams | 1d | 2026-06-11 A | 2026-06-11 A | DAM3-C-B5-S-1137, DAM3-C-B5-S-1287 | 100% | 2026-06-14 | 2026-06-14 |  |  | Mason [16 h]; Carperter [16 h]; Concrete Mixer [8 h]; Steel Fixer [16 h]; Equipment Operator [16 h]; Construction Cost [33993.1] | 33,993.09 | 33,993.09 | 1 | 05 | 01 | 02 | H1.C.K1.00.RC.F.1110 | PH1-MHR-ST-1030 | 21 |  |  |  |  |
| DAM3-C-B5-S-1237 |  | Damp proof /Bitumin paint on Grade Beams | 2d | 2026-06-14 A | 2026-06-18 A | DAM3-C-B5-S-1087 | 100% | 2026-06-16 | 2026-06-17 |  |  | Painter [32 h]; Construction Cost [24777.7] | 24,777.73 | 24,777.73 | 1 | 05 | 01 | 02 | H1.C.K1.00.SW.F.1050 | PH1-MHR-ST-1080 | 15 |  |  |  |  |
|  | 5 | **SLAB ON GRADE** |  | 2026-06-21 | 2026-10-20 |  |  |  |  |  |  |  |  |  |  |  |  |  |  |  |  |  |  |  |  |
| DAM3-C-B5-S-1267 |  | Backfilling / Compaction for Slab on Grade | 7d | 2026-06-21 A | 2026-06-24 A | DAM3-C-B5-S-1237 | 100% | 2026-06-22 | 2026-06-29 |  |  | Mini Roller Compactor [128 h]; General Labour [256 h]; Equipment Operator [256 h]; Wheel Loader [128 h]; Truck [128 h]; Construction Cost [23023.1] | 23,023.09 | 23,023.09 | 1 | 05 | 01 | 02 |  |  |  |  |  |  |  |
| DAM3-C-B5-S-1097 |  | Pouring Concrete for Ground Slab | 4d | 2026-08-01 A | 2026-08-04 A | DAM3-C-B5-S-1247 | 100% | 2026-08-05 | 2026-08-09 |  |  | Mason [64 h]; Carperter [64 h]; Steel Fixer [64 h]; Concrete Mixer [32 h]; Equipment Operator [64 h]; Construction Cost [344195] | 344,195.21 | 344,195.21 | 1 | 05 | 01 | 02 | H1.C.A1.06.RC.G.1210 | PH1-MHR-ST-496 | 24 |  |  |  |  |
| DAM3-C-B5-S-1217 |  | Anti Termite Treatment below Ground Slab | 1d | 2026-08-01 A | 2026-08-04 A | DAM3-C-B5-S-1267 | 100% | 2026-08-02 | 2026-08-02 |  |  | General Labour [16 h]; Construction Cost [15874.1] | 15,874.08 | 15,874.08 | 1 | 05 | 01 | 02 | H1.C.A1.06.SW.F.1220 | PH1-MHR-ST-645 | 15 |  |  |  |  |
| DAM3-C-B5-S-1247 |  | Vapour barrier for below Ground Slab | 2d | 2026-08-01 A | 2026-08-04 A | DAM3-C-B5-S-1217 | 100% | 2026-08-03 | 2026-08-04 |  |  | General Labour [32 h]; Construction Cost [13233.5] | 13,233.49 | 13,233.49 | 1 | 05 | 01 | 02 |  |  |  |  |  |  |  |
| DAM3-C-B5-S-1277 |  | Concrete pad | 7d | 2026-10-13 | 2026-10-20 | DAM3-C-B5-A-320 |  |  |  | 20d | 1d | Mason [112 h]; Construction Cost [907.11] | 907.11 |  |  | 05 | 01 | 02 |  |  |  |  |  |  |  |
|  | 4 | **COLUMNS & BEAMS** |  | 2026-06-03 | 2026-09-22 |  |  |  |  |  |  |  |  |  |  |  |  |  |  |  |  |  |  |  |  |
| DAM3-C-B5-S-6101 |  | Rebar for Tie Beams | 4d | 2026-06-03 A | 2026-06-09 A | DAM3-C-B5-S-5103 | 100% | 2026-07-04 | 2026-07-07 |  |  | Steel Fixer [64 h]; Construction Cost [7263.64] | 7,263.64 | 7,263.64 | 1 | 05 | 01 | 02 |  |  |  | 3 | 1 | 4 | 1 |
| DAM3-C-B5-S-6102 |  | Formwork for Tie Beams | 2d | 2026-06-04 A | 2026-06-10 A | DAM3-C-B5-S-6101 | 100% | 2026-07-08 | 2026-07-09 |  |  | Carperter [32 h]; Construction Cost [1815.91] | 1,815.91 | 1,815.91 | 1 | 05 | 01 | 02 |  |  |  | 3 | 1 | 4 | 1 |
| DAM3-C-B5-S-6103 |  | Pouring Concrete for Tie Beams | 1d | 2026-06-11 A | 2026-06-11 A | DAM3-C-B5-S-6102 | 100% | 2026-07-07 | 2026-07-08 |  |  | Mason [16 h]; Carperter [16 h]; Concrete Mixer [32 h]; Steel Fixer [16 h]; Equipment Operator [16 h]; Construction Cost [9079.54] | 9,079.54 | 9,079.54 | 1 | 05 | 01 | 02 | H1.C.K1.00.RC.F.1110 | PH1-MHR-ST-1030 | 21 | 3 | 1 | 4 | 1 |
| DAM3-C-B5-S-5101 |  | Rebar for column | 5d | 2026-07-14 A | 2026-07-16 A | DAM3-C-B5-S-1267 | 100% | 2026-07-18 | 2026-07-22 |  |  | Steel Fixer [112 h]; Construction Cost [20144] | 20,144.05 | 20,144.05 | 1 | 05 | 01 | 02 |  |  |  | 3 | 1 | 4 | 1 |
| DAM3-C-B5-S-5102 |  | Formwork for column | 4d | 2026-07-16 A | 2026-07-20 A | DAM3-C-B5-S-5101 | 100% | 2026-07-23 | 2026-07-27 |  |  | Carperter [64 h]; Construction Cost [5036.01] | 5,036.01 | 5,036.01 | 1 | 05 | 01 | 02 |  |  |  | 3 | 1 | 4 | 1 |
| DAM3-C-B5-S-5103 |  | Pouring Concrete for column | 1d | 2026-07-18 A | 2026-07-21 A | DAM3-C-B5-S-5102 | 100% | 2026-07-23 | 2026-07-25 |  |  | Mason [16 h]; Carperter [16 h]; Concrete Mixer [32 h]; Steel Fixer [16 h]; Equipment Operator [16 h]; Construction Cost [25180.1] | 25,180.06 | 25,180.06 | 1 | 05 | 01 | 02 | H1.C.K1.00.RC.F.1110 | PH1-MHR-ST-1030 | 21 | 3 | 1 | 4 | 1 |
| DAM3-C-B5-S-6113 |  | Rebar for Beams | 4d | 2026-09-07 A | 2026-09-15 A | DAM3-C-B5-S-6103, S001-C-TC-A-90 | 100% | 2026-09-28 | 2026-10-01 |  |  | Steel Fixer [64 h]; Construction Cost [13379.1] | 13,379.11 | 13,379.11 | 1 | 05 | 01 | 02 |  |  |  | 3 | 1 | 4 | 1 |
| DAM3-C-B5-S-6123 |  | Formwork for Beams | 2d | 2026-09-15 A | 2026-09-20 A | DAM3-C-B5-S-6113, DAM3-C-B5-S-6113 FF | 100% | 2026-09-26 | 2026-09-28 |  |  | Carperter [32 h]; Construction Cost [3344.77] | 3,344.77 | 3,344.77 | 1 | 05 | 01 | 02 |  |  |  | 3 | 1 | 4 | 1 |
| DAM3-C-B5-S-6133 |  | Pouring Concrete for Beams | 1d | 2026-09-17 A | 2026-09-22 A | DAM3-C-B5-S-6123, DAM3-C-B5-S-6123 FF | 100% | 2026-09-28 | 2026-09-29 |  |  | Mason [16 h]; Carperter [16 h]; Concrete Mixer [32 h]; Steel Fixer [16 h]; Equipment Operator [16 h]; Construction Cost [16723.9] | 16,723.88 | 16,723.88 | 1 | 05 | 01 | 02 | H1.C.K1.00.RC.F.1110 | PH1-MHR-ST-1030 | 21 | 3 | 1 | 4 | 1 |

| ID | WBS | Activity | Duration | Start | Finish | Predecessors | Complete | Planned start | Planned finish | Total float | Free float | Resources | Cost | Actual cost | Phasing Code Category | Discipline | Project component code | 00 Activity ID | Zone # |
| --- | --- | --- | --- | --- | --- | --- | --- | --- | --- | --- | --- | --- | --- | --- | --- | --- | --- | --- | --- |
|  | 5 | **STRUCTURAL STEEL** |  | 2026-07-02 | 2026-10-20 |  |  |  |  |  |  |  |  |  |  |  |  |  |  |
| DAM3-C-B5-SS-270 |  | Installation of columns | 3d | 2026-07-02 A | 2026-07-05 A | DAM3-C-B5-S-1097 | 100% | 2026-07-11 | 2026-07-13 |  |  | Structural Steel Fixer [80 h]; General Labour [80 h]; Equipment Operator [80 h]; Mobile Crane [24 h]; Construction Cost [217508] | 217,507.55 | 217,507.55 | 05 | 02 | 02 |  |  |
| DAM3-C-B5-SS-280 |  | Installation of raft and purlins | 5d | 2026-07-02 A | 2026-07-06 A | DAM3-C-B5-SS-270 | 100% | 2026-07-14 | 2026-07-19 |  |  | Structural Steel Fixer [160 h]; General Labour [160 h]; Mobile Crane [56 h]; Equipment Operator [160 h]; Construction Cost [326261] | 326,261.32 | 326,261.32 | 05 | 02 | 02 |  |  |
| DAM3-C-B5-SS-1840 |  | Intumescent paint to steel works | 7d | 2026-07-12 A | 2026-07-20 A | DAM3-C-B5-SS-280 | 100% | 2026-07-22 | 2026-07-29 |  |  | Painter [112 h]; Construction Cost [317760] | 317,759.56 | 317,759.56 | 05 | 02 | 02 | H1.C.A1.SA.FI.G.0730 | 1 |
| DAM3-C-B5-SS-310 |  | Installation of roof sheet | 5d | 2026-07-29 A | 2026-08-08 A | DAM3-C-B5-A-290, DAM3-C-B5-SS-1840, DAM3-C-B5-S-6133 | 100% | 2026-09-05 | 2026-09-09 |  |  | Roof sheet worker [160 h]; General Labour [160 h]; Mobile Crane [40 h]; Equipment Operator [160 h]; Construction Cost [217508] | 217,507.55 | 217,507.55 | 05 | 02 | 02 |  |  |
| DAM3-C-B5-SS-1030 |  | Steel members for external platform | 7d | 2026-08-31 A | 2026-09-01 A | DAM3-C-B5-SS-1850 | 100% | 2026-09-12 | 2026-09-19 |  |  | Construction Cost [18670.8]; General Labour [112 h]; Mobile Crane [56 h]; Structural Steel Fixer [112 h]; Equipment Operator [112 h] | 18,670.78 | 18,670.78 | 05 | 02 | 02 | H1.C.A1.SA.FI.G.0730 | 1 |
| DAM3-C-B5-SS-300 |  | Installation of wall sandwich panel | 5d | 2026-10-04 A | 2026-10-08 A | DAM3-C-B5-A-320 | 100% | 2026-10-11 | 2026-10-15 |  |  | Sandwich panel worker [112 h]; General Labour [112 h]; Mobile Crane [40 h]; Equipment Operator [112 h]; Construction Cost [326261] | 326,261.32 | 326,261.32 | 05 | 02 | 02 |  |  |
| DAM3-C-B5-SS-1850 |  | Steel members for office area | 7d | 2026-10-05 A | 2026-10-06 A | DAM3-C-B5-SS-1840, DAM3-C-B5-SS-280 | 100% | 2026-10-05 | 2026-10-12 |  |  | Construction Cost [115805]; Equipment Operator [112 h]; General Labour [112 h]; Mobile Crane [56 h]; Structural Steel Fixer [112 h] | 115,805.2 | 115,805.2 | 05 | 02 | 02 | H1.C.A1.SA.FI.G.0730 | 1 |
| DAM3-C-B5-SS-1020 |  | Epoxy paint to steel members at office area | 7d | 2026-10-13 | 2026-10-20 | DAM3-C-B5-SS-1850 |  |  |  | 9.5d | 0d | Painter [112 h]; Construction Cost [23161] | 23,161.04 |  | 05 | 02 | 02 | H1.C.A1.SA.FI.G.0730 | 1 |
| DAM3-C-B5-SS-1040 |  | Epoxy paint for external platform | 5d | 2026-10-13 | 2026-10-18 | DAM3-C-B5-SS-1030, DAM3-C-B5-SS-1030 FF |  |  |  | 11.5d | 2d | Painter [80 h]; Construction Cost [3734.16] | 3,734.16 |  | 05 | 02 | 02 | H1.C.A1.SA.FI.G.0730 | 1 |
|  | 2 | **ARCHITECTURAL** |  | 2026-08-08 | 2026-12-02 |  |  |  |  |  |  |  |  |  |  |  |  |  |  |
|  | 1 | **MASONARY WORKS** |  | 2026-08-09 | 2026-09-09 |  |  |  |  |  |  |  |  |  |  |  |  |  |  |
| DAM3-C-B5-A-290 |  | Block work at factory area | 10d | 2026-08-09 A | 2026-08-12 A | DAM3-C-B5-SS-280, DAM3-C-B5-S-1097 | 100% | 2026-08-11 | 2026-08-22 |  |  | AAC panel erector [240 h]; General Labour [240 h]; Equipment Operator [240 h]; Mobile Crane [120 h]; Construction Cost [58338.7] | 58,338.72 | 58,338.72 | 05 | 03 | 02 |  |  |
| DAM3-C-B5-A-320 |  | Block work at office area | 7d | 2026-08-13 A | 2026-09-09 A | DAM3-C-B5-SS-1850 | 100% | 2026-08-25 | 2026-09-01 |  |  | AAC panel erector [160 h]; General Labour [160 h]; Mobile Crane [56 h]; Equipment Operator [160 h]; Construction Cost [6179.18] | 6,179.18 | 6,179.18 | 05 | 03 | 02 |  |  |
| DAM3-C-B5-A-1440 |  | Block work at toilet area | 7d | 2026-08-15 A | 2026-09-09 A | DAM3-C-B5-A-320 | 100% | 2026-09-02 | 2026-09-09 |  |  | Mason [112 h]; Construction Cost [14436.3] | 14,436.31 | 14,436.31 | 05 | 03 | 02 |  | 1 |
|  | 5 | **WALL FINISHES** |  | 2026-09-26 | 2026-11-07 |  |  |  |  |  |  |  |  |  |  |  |  |  |  |
| DAM3-C-B5-A-1450 |  | Internal Wall Plaster | 15d | 2026-09-26 A | 2026-10-11 A | DAM3-C-B5-A-1440, DAM3-C-B5-E-873 | 100% | 2026-10-11 | 2026-10-27 |  |  | Mason [240 h]; Construction Cost [48590.2] | 48,590.16 | 48,590.16 | 05 | 03 | 02 | H1.C.A1.SA.FI.G.0710 | 1 |
| DAM3-C-B5-A-1500 |  | Paint to Plaster (Primer, Putty & First Coat) | 7d | 2026-10-31 | 2026-11-07 | DAM3-C-B5-A-1520, DAM3-C-B5-SS-310, DAM3-C-B6-E-453 |  |  |  | 41d | 0d | Painter [112 h]; Construction Cost [44167.3] | 44,167.3 |  | 05 | 03 | 02 | H1.C.A1.SA.FI.G.0730 | 1 |
|  | 2 | **CIELING FINISHES** |  | 2026-10-22 | 2026-10-27 |  |  |  |  |  |  |  |  |  |  |  |  |  |  |
| DAM3-C-B5-A-1510 |  | Installation of Ceiling Gypsum Board | 5d | 2026-10-22 | 2026-10-27 | DAM3-C-B5-A-1490, DAM3-C-B5-S-1277 |  |  |  | 41d | 0d | Carperter [80 h]; Construction Cost [46792.3] | 46,792.3 |  | 05 | 03 | 02 | H1.C.A1.SA.FI.G.0820 | 1 |
|  | 6 | **FLOOR FINISHES** |  | 2026-10-11 | 2026-12-02 |  |  |  |  |  |  |  |  |  |  |  |  |  |  |
| DAM3-C-B5-A-1490 |  | Tiles for Toilet | 7d | 2026-10-11 A | 2026-10-13 A | DAM3-C-B5-A-1630 | 100% | 2026-10-24 | 2026-10-31 |  |  | Tile Fixer [112 h]; Construction Cost [46530.7] | 46,530.71 | 46,530.71 | 05 | 03 | 02 | H1.C.A1.SA.FI.G.0640 | 1 |
| DAM3-C-B5-A-1520 |  | Tiles for Office Area | 2d | 2026-10-28 | 2026-10-29 | DAM3-C-B5-A-1510 |  |  |  | 41d | 0d | Tile Fixer [32 h]; Construction Cost [26867.3] | 26,867.31 |  | 05 | 03 | 02 |  |  |
| DAM3-C-B5-A-1650 |  | Granite strip | 2d | 2026-10-31 | 2026-11-01 | DAM3-C-B5-A-1830, DAM3-C-B5-A-1520 |  |  |  | 43d | 0d | Tile Fixer [32 h]; Construction Cost [671.12] | 671.12 |  | 05 | 03 | 02 | H1.C.A1.SA.FI.G.0640 | 1 |
| DAM3-C-B5-A-1670 |  | Epoxy paint | 7d | 2026-11-25 | 2026-12-02 | DAM3-C-B5-A-1610 |  |  |  | 43.5d | 12d | Painter [112 h]; Construction Cost [115420] | 115,419.76 |  | 05 | 03 | 02 |  |  |

| ID | WBS | Activity | Duration | Start | Finish | Predecessors | Complete | Planned start | Planned finish | Total float | Free float | Resources | Cost | Actual cost | Phasing Code Category | Discipline | Project component code | Ordinal Start | Ordinal Finish | 00 Activity ID | Ordinal Duration | Zone # |
| --- | --- | --- | --- | --- | --- | --- | --- | --- | --- | --- | --- | --- | --- | --- | --- | --- | --- | --- | --- | --- | --- | --- |
|  | 3 | **DOORS & WINDOWS** |  | 2026-10-13 | 2026-10-28 |  |  |  |  |  |  |  |  |  |  |  |  |  |  |  |  |  |
| DAM3-C-B5-A-1830 |  | Window (CW1) | 7d | 2026-10-13 | 2026-10-20 | DAM3-C-B5-SS-300 |  |  |  | 16.5d | 0d | Carperter [112 h]; Construction Cost [94173.2] | 94,173.21 |  | 05 | 03 | 02 |  |  |  |  |  |
| DAM3-C-B5-A-1460 |  | Roll up Shutter Door | 1d | 2026-10-21 | 2026-10-21 | DAM3-C-B5-A-1830 |  |  |  | 16.5d | 0d | Carperter [16 h]; Construction Cost [68619.2] | 68,619.2 |  | 05 | 03 | 02 |  |  |  |  |  |
| DAM3-C-B5-A-1470 |  | Supply and install (D5) 1000*2200mm single leaf steel door with door | 1d | 2026-10-22 | 2026-10-22 | DAM3-C-B5-A-1460 |  |  |  | 16.5d | 0d | Carperter [16 h]; Construction Cost [16016.2] | 16,016.16 |  | 05 | 03 | 02 |  |  |  |  |  |
| DAM3-C-B5-A-1530 |  | Supply and install (D4) 800*2200 mm single leaf aluminum door with door | 1d | 2026-10-24 | 2026-10-24 | DAM3-C-B5-A-1470 |  |  |  | 16.5d | 0d | Carperter [16 h]; Construction Cost [22737.8] | 22,737.85 |  | 05 | 03 | 02 |  |  |  |  |  |
| DAM3-C-B5-A-1540 |  | Supply and install (D7) 1000*2200 mm single leaf aluminum door with door | 1d | 2026-10-25 | 2026-10-25 | DAM3-C-B5-A-1530 |  |  |  | 16.5d | 0d | Carperter [16 h]; Construction Cost [7811.07] | 7,811.07 |  | 05 | 03 | 02 |  |  |  |  |  |
| DAM3-C-B5-A-1760 |  | Supply and install (D3) 1000*2200 mm single leaf aluminum door with door | 1d | 2026-10-26 | 2026-10-26 | DAM3-C-B5-A-1540 |  |  |  | 16.5d | 0d | Carperter [16 h]; Construction Cost [16016.2] | 16,016.16 |  | 05 | 03 | 02 |  |  |  |  |  |
| DAM3-C-B5-A-1770 |  | Supply and install fire rated 45 min (D2) 1200*2200 mm single leaf steel door | 1d | 2026-10-27 | 2026-10-27 | DAM3-C-B5-A-1760 |  |  |  | 16.5d | 0d | Carperter [16 h]; Construction Cost [16711.5] | 16,711.52 |  | 05 | 03 | 02 |  |  |  |  |  |
| DAM3-C-B5-A-1780 |  | Skylight fixtures installation | 1d | 2026-10-28 | 2026-10-28 | DAM3-C-B5-A-1770 |  |  |  | 16.5d | 7d | Carperter [16 h]; Construction Cost [6489.89] | 6,489.89 |  | 05 | 03 | 02 |  |  |  |  |  |
|  | 4 | **WATER PROOFING WORKS** |  | 2026-10-18 | 2026-10-21 |  |  |  |  |  |  |  |  |  |  |  |  |  |  |  |  |  |
| DAM3-C-B5-A-1630 |  | Waterproofing membrane for toilets | 4d | 2026-10-18 | 2026-10-21 | DAM3-C-B5-M-1130, DAM3-C-B5-A-1450 |  |  |  | 41d | 0d | General Labour [64 h]; Construction Cost [4879.02] | 4,879.02 |  | 05 | 03 | 02 |  |  |  |  |  |
|  | 7 | **METAL WORKS** |  | 2026-08-08 | 2026-11-14 |  |  |  |  |  |  |  |  |  |  |  |  |  |  |  |  |  |
| DAM3-C-B5-A-1570 |  | Galvanised Steel Gratings | 2d | 2026-08-08 A | 2026-08-08 A | DAM3-C-B5-A-1580 | 100% | 2026-10-31 | 2026-11-01 |  |  | Steel Fixer [32 h]; General Labour [32 h]; Construction Cost [6455.16] | 6,455.16 | 6,455.16 | 05 | 03 | 02 |  |  |  |  |  |
| DAM3-C-B5-A-1560 |  | Steel Ladder | 2d | 2026-11-02 | 2026-11-03 | DAM3-C-B5-A-1650 |  |  |  | 43d | 0d | Steel Fixer [32 h]; General Labour [32 h]; Construction Cost [9839.16] | 9,839.16 |  | 05 | 03 | 02 |  |  |  |  |  |
| DAM3-C-B5-A-1660 |  | Steel railing works | 4d | 2026-11-04 | 2026-11-08 | DAM3-C-B5-A-1560 |  |  |  | 43d | 0d | Steel Fixer [64 h]; General Labour [64 h]; Construction Cost [1533.98] | 1,533.98 |  | 05 | 03 | 02 |  |  |  |  |  |
| DAM3-C-B5-A-1580 |  | Aluminium composite panel | 5d | 2026-11-09 | 2026-11-14 | DAM3-C-B5-A-1660 |  |  |  | 43d | 0d | Steel Fixer [80 h]; General Labour [80 h]; Construction Cost [175889] | 175,888.76 |  | 05 | 03 | 02 |  |  |  |  |  |
|  | 8 | **SPECIALTIES** |  | 2026-11-15 | 2026-11-24 |  |  |  |  |  |  |  |  |  |  |  |  |  |  |  |  |  |
| DAM3-C-B5-A-1590 |  | Installation of fittings | 5d | 2026-11-15 | 2026-11-19 | DAM3-C-B5-A-1570 |  |  |  | 43d | 0d | Plumber [80 h]; Construction Cost [22981.3] | 22,981.27 |  | 05 | 03 | 02 |  |  |  |  |  |
| DAM3-C-B5-A-1820 |  | Identification sign; ID01 & ID02 | 3d | 2026-11-21 | 2026-11-23 | DAM3-C-B5-A-1590 |  |  |  | 43d | 0d | Mason [48 h]; Construction Cost [9630.56] | 9,630.56 |  | 05 | 03 | 02 |  |  |  |  |  |
| DAM3-C-B5-A-1610 |  | Furniture Installation | 1d | 2026-11-24 | 2026-11-24 | DAM3-C-B5-A-1820 |  |  |  | 43d | 0d | General Labour [16 h]; Mason [16 h]; Construction Cost [12468.8] | 12,468.83 |  | 05 | 03 | 02 |  |  |  |  |  |
|  | 3 | **MECHANICAL** |  | 2026-07-08 | 2026-11-26 |  |  |  |  |  |  |  |  |  |  |  |  |  |  |  |  |  |
|  | 1 | **HVAC** |  | 2026-11-08 | 2026-11-23 |  |  |  |  |  |  |  |  |  |  |  |  |  |  |  |  |  |
|  | 1 | **FIRST STAGE** |  | 2026-11-15 | 2026-11-18 |  |  |  |  |  |  |  |  |  |  |  |  |  |  |  |  |  |
| DAM3-C-B5-M-1070 |  | Installation of HVAC Ducts | 2d | 2026-11-15 | 2026-11-16 | DAM3-C-B5-M-1090 |  |  |  | 41d | 0d | Ductman [32 h]; Construction Cost [149489] | 149,489.33 |  | 05 | 04 | 02 | 0 | 0 | H1.C.A1.0A.MH.G.1040 | 0 | 1 |
| DAM3-C-B5-M-1100 |  | Installation of Duct insulation | 2d | 2026-11-17 | 2026-11-18 | DAM3-C-B5-M-1070 |  |  |  | 41d | 0d | Ductman [32 h]; Construction Cost [21205.4] | 21,205.4 |  | 05 | 04 | 02 |  |  |  |  |  |

| ID | WBS | Activity | Duration | Start | Finish | Predecessors | Complete | Remaining | Planned start | Planned finish | Total float | Free float | Resources | Cost | Actual cost | Ordinal Start | Ordinal Finish | 00 Activity ID | Ordinal Duration | Zone # | Phasing Code Category | Discipline | Project component code |
| --- | --- | --- | --- | --- | --- | --- | --- | --- | --- | --- | --- | --- | --- | --- | --- | --- | --- | --- | --- | --- | --- | --- | --- |
|  | 2 | **SECOND STAGE** |  | 2026-11-08 | 2026-11-23 |  |  |  |  |  |  |  |  |  |  |  |  |  |  |  |  |  |  |
| DAM3-C-B5-M-1060 |  | Installation of Exhaust Fans | 2d | 2026-11-08 | 2026-11-09 | DAM3-C-B5-A-1500 |  |  |  |  | 41d | 0d | AC Technician [32 h]; Construction Cost [7938.56] | 7,938.56 |  | 0 | 0 | H1.C.A1.0A.MH.X.4050 | 0 | 1 | 05 | 04 | 02 |
| DAM3-C-B5-M-1090 |  | Installation of Wall Propeller Type Exhaust Fan | 4d | 2026-11-10 | 2026-11-14 | DAM3-C-B5-M-1060 |  |  |  |  | 41d | 0d | AC Technician [64 h]; Construction Cost [46831.6] | 46,831.64 |  |  |  |  |  |  | 05 | 04 | 02 |
| DAM3-C-B5-M-1080 |  | Installation of Diffuser | 2d | 2026-11-19 | 2026-11-21 | DAM3-C-B5-M-1100 |  |  |  |  | 41d | 0d | Ductman [32 h]; Construction Cost [2144] | 2,144 |  | 0 | 0 | H1.C.A1.0A.MH.G.3010 | 0 | 1 | 05 | 04 | 02 |
| DAM3-C-B5-M-1270 |  | Supply, install, test and commission door grilles & exhaust louvers | 2d | 2026-11-22 | 2026-11-23 | DAM3-C-B5-M-1080 |  |  |  |  | 41d | 0d | Ductman [32 h]; Construction Cost [5574.4] | 5,574.4 |  | 0 | 0 | H1.C.A1.0A.MH.G.3010 | 0 | 1 | 05 | 04 | 02 |
|  | 2 | **FIRE FIGHTING SYSTEM** |  | 2026-10-11 | 2026-11-26 |  |  |  |  |  |  |  |  |  |  |  |  |  |  |  |  |  |  |
|  | 1 | **FIRST STAGE** |  | 2026-10-11 | 2026-11-10 |  |  |  |  |  |  |  |  |  |  |  |  |  |  |  |  |  |  |
| DAM3-C-B5-M-1230 |  | Installation of Fire Fighting Pipes (Seamless Black Steel) | 7d | 2026-10-11 A | 2026-11-09 | DAM3-C-B5-A-1500 | 75% | 1.75d | 2026-11-09 | 2026-11-17 | 52d | 0d | Pipe Fitter [112 h]; Construction Cost [72394.8] | 72,394.75 | 54,296.06 | 0 | 0 | H1.C.A1.0A.MF.G.1010 | 0 | 1 | 05 | 04 | 02 |
| DAM3-C-B5-M-1240 |  | Installation of Fire Fighting Valve | 5d | 2026-10-11 A | 2026-11-10 | DAM3-C-B5-M-1230 | 75% | 1.25d | 2026-11-17 | 2026-11-23 | 52d | 0d | Pipe Fitter [80 h]; Construction Cost [12199.4] | 12,199.4 | 9,149.55 | 0 | 0 | H1.C.A1.0A.MF.G.2010 | 0 | 1 | 05 | 04 | 02 |
|  | 2 | **SECOND STAGE** |  | 2026-11-11 | 2026-11-26 |  |  |  |  |  |  |  |  |  |  |  |  |  |  |  |  |  |  |
| DAM3-C-B5-M-1250 |  | Installation of Fire Hose Cabinet | 3d | 2026-11-11 | 2026-11-14 | DAM3-C-B5-M-1240 |  |  |  |  | 52d | 41d | Pipe Fitter [48 h]; Construction Cost [15158.6] | 15,158.56 |  | 0 | 0 | H1.C.A1.0A.MF.G.3010 | 0 | 1 | 05 | 04 | 02 |
| DAM3-C-B5-M-1300 |  | Supply, install, test and commission Fire Department Connection(FDC) | 3d | 2026-11-24 | 2026-11-26 | DAM3-C-B5-M-1270 |  |  |  |  | 41d | 30d | Pipe Fitter [48 h]; Construction Cost [2706.06] | 2,706.06 |  | 0 | 0 | H1.C.A1.0A.MF.G.3010 | 0 | 1 | 05 | 04 | 02 |
|  | 3 | **SEWER AND DRAINAGE SYSTEM** |  | 2026-07-08 | 2026-11-09 |  |  |  |  |  |  |  |  |  |  |  |  |  |  |  |  |  |  |
|  | 1 | **FIRST STAGE** |  | 2026-07-08 | 2026-10-24 |  |  |  |  |  |  |  |  |  |  |  |  |  |  |  |  |  |  |
| DAM3-C-B5-M-1130 |  | Installation of Sanitary Waste / Drainage Pipes | 4d | 2026-07-08 A | 2026-07-12 A | DAM3-C-B5-S-1237 | 100% |  | 2026-07-18 | 2026-07-21 |  |  | Plumber [64 h]; Construction Cost [18585.1] | 18,585.14 | 18,585.14 | 0 | 0 | H1.C.K1.00.MP.G.1020 | 0 | 1 | 05 | 04 | 02 |
| DAM3-C-B5-M-1310 |  | Installation of Trench drain | 5d | 2026-07-11 A | 2026-07-14 A | DAM3-C-B5-M-1150 | 100% |  | 2026-10-06 | 2026-10-12 |  |  | Plumber [80 h]; Construction Cost [11508.8] | 11,508.8 | 11,508.8 |  |  |  |  |  | 05 | 04 | 02 |
| DAM3-C-B5-M-1150 |  | Installation of Floor Drain | 2d | 2026-10-22 | 2026-10-24 | DAM3-C-B5-M-1130, DAM3-C-B5-A-1490 |  |  |  |  | 48d | 0d | Plumber [32 h]; Construction Cost [11056] | 11,055.96 |  |  |  |  |  | 1 | 05 | 04 | 02 |
|  | 2 | **SECOND STAGE** |  | 2026-10-25 | 2026-11-09 |  |  |  |  |  |  |  |  |  |  |  |  |  |  |  |  |  |  |
| DAM3-C-B5-M-1110 |  | Installation of Electric Water Heater | 2d | 2026-10-25 | 2026-10-26 | DAM3-C-B5-M-1310 |  |  |  |  | 48d | 0d | Plumber [32 h]; Construction Cost [1819.51] | 1,819.51 |  | 0 | 0 | H1.C.K1.00.MP.G.1030 | 0 | 1 | 05 | 04 | 02 |
| DAM3-C-B5-M-1120 |  | Installation of Sanitary Fixture and Accessories | 4d | 2026-10-27 | 2026-10-31 | DAM3-C-B5-M-1110 |  |  |  |  | 48d | 0d | Plumber [64 h]; Construction Cost [19921.7] | 19,921.72 |  | 0 | 0 | H1.C.K1.00.MP.G.2040 | 0 | 1 | 05 | 04 | 02 |
| DAM3-C-B5-M-1140 |  | Installation of Lavotary /Wash Basin | 2d | 2026-11-01 | 2026-11-02 | DAM3-C-B5-M-1110, DAM3-C-B5-M-1120 |  |  |  |  | 48d | 0d | Plumber [32 h]; Construction Cost [21416.7] | 21,416.68 |  |  |  |  |  | 1 | 05 | 04 | 02 |
| DAM3-C-B5-M-1200 |  | Installation of Bib Tap | 2d | 2026-11-03 | 2026-11-04 | DAM3-C-B5-M-1120, DAM3-C-B5-M-1140 |  |  |  |  | 48d | 0d | Plumber [32 h]; Construction Cost [1900.66] | 1,900.66 |  |  |  |  |  |  | 05 | 04 | 02 |
| DAM3-C-B5-M-1160 |  | Installation of Water Tap | 2d | 2026-11-05 | 2026-11-07 | DAM3-C-B5-M-1140, DAM3-C-B5-M-1200 |  |  |  |  | 48d | 0d | Plumber [32 h]; Construction Cost [2874.14] | 2,874.14 |  |  |  |  |  |  | 05 | 04 | 02 |
| DAM3-C-B5-M-1170 |  | Installation of Roof Vent Cap | 2d | 2026-11-08 | 2026-11-09 | DAM3-C-B5-M-1160 |  |  |  |  | 48d | 37d | Pipe Fitter [32 h]; Construction Cost [927.12] | 927.12 |  |  |  |  |  |  | 05 | 04 | 02 |

| ID | WBS | Activity | Duration | Start | Finish | Predecessors | Complete | Remaining | Planned start | Planned finish | Total float | Free float | Resources | Cost | Actual cost | Ordinal Start | Ordinal Finish | 00 Activity ID | Ordinal Duration | Zone # | Phasing Code Category | Discipline | Project component code |
| --- | --- | --- | --- | --- | --- | --- | --- | --- | --- | --- | --- | --- | --- | --- | --- | --- | --- | --- | --- | --- | --- | --- | --- |
|  | 4 | **WATER SUPPLY SYSTEM** |  | 2026-09-29 | 2026-11-12 |  |  |  |  |  |  |  |  |  |  |  |  |  |  |  |  |  |  |
|  | 1 | **FIRST STAGE** |  | 2026-09-29 | 2026-10-03 |  |  |  |  |  |  |  |  |  |  |  |  |  |  |  |  |  |  |
| DAM3-C-B5-M-1210 |  | Installation of Water Supply Valve | 2d | 2026-09-29 A | 2026-10-03 A | DAM3-C-B5-M-1220 | 100% |  | 2026-12-02 | 2026-12-05 |  |  | Plumber [32 h]; Construction Cost [18274.3] | 18,274.27 | 18,274.27 | 0 | 0 | H1.C.K1.00.MP.G.2010 | 0 | 1 | 05 | 04 | 02 |
| DAM3-C-B5-M-1220 |  | Installation of Water Supply Pipes | 4d | 2026-09-29 A | 2026-10-03 A | DAM3-C-B5-A-1500 | 100% |  | 2026-11-28 | 2026-12-02 |  |  | Plumber [64 h]; Construction Cost [23318.4] | 23,318.41 | 23,318.41 | 0 | 0 | H1.C.K1.00.MP.G.1010 | 0 | 1 | 05 | 04 | 02 |
|  | 2 | **SECOND STAGE** |  | 2026-11-08 | 2026-11-12 |  |  |  |  |  |  |  |  |  |  |  |  |  |  |  |  |  |  |
| DAM3-C-B5-M-1260 |  | Capped connection | 5d | 2026-11-08 | 2026-11-12 | DAM3-C-B5-M-1210 |  |  |  |  | 55.2d | 5d | Plumber [80 h]; Construction Cost [278.13] | 278.13 |  |  |  |  |  |  | 05 | 04 | 02 |
|  | 4 | **ELECTRICAL** |  | 2026-06-04 | 2026-12-27 |  |  |  |  |  |  |  |  |  |  |  |  |  |  |  |  |  |  |
|  | 1 | **FIRST STAGE** |  | 2026-06-04 | 2026-12-20 |  |  |  |  |  |  |  |  |  |  |  |  |  |  |  |  |  |  |
| DAM3-C-B5-E-803 |  | Installation of Earthing and Grounding | 4d | 2026-06-04 A | 2026-12-15 | DAM3-C-B5-E-913 SS | 90% | 0.4d | 2026-12-26 | 2026-12-29 | 57.4d | 47.6d | Electrician [64 h]; Construction Cost [19646.5] | 19,646.47 | 17,681.82 |  |  | H1.C.K1.00.EM.G.2040 |  | 1 | 05 | 05 | 02 |
| DAM3-C-B5-E-833 |  | Installation of Conduits and wiring outlets - Fire Alarm System | 4d | 2026-06-04 A | 2026-11-16 | DAM3-C-B5-E-893 | 50% | 2d | 2026-11-18 | 2026-11-22 | 47.8d | 0d | Electrician [64 h]; Construction Cost [1768.31] | 1,768.31 | 884.15 |  |  | H1.C.K1.00.EL.G.1020 |  | 1 | 05 | 05 | 02 |
| DAM3-C-B5-E-873 |  | Installation of Sleeves & Power outlet | 8d | 2026-06-04 A | 2026-10-17 | DAM3-C-B5-A-1440 | 50% | 4d | 2026-08-13 | 2026-08-22 | 41d | 0d | Electrician [128 h]; Construction Cost [2920.45] | 2,920.45 | 1,460.23 |  |  |  |  | 1 | 05 | 05 | 02 |
| DAM3-C-B5-E-853 |  | Installation of Conduites for Lighting Fixture | 4d | 2026-09-20 A | 2026-11-26 | DAM3-C-B5-E-823 | 90% | 0.4d | 2026-12-06 | 2026-12-09 | 47.8d | 0d | Electrician [64 h]; Construction Cost [8462.97] | 8,462.97 | 7,616.67 |  |  | H1.C.K1.00.EM.G.2030 |  | 1 | 05 | 05 | 02 |
| DAM3-C-B5-E-923 |  | Installation of Wires | 4d | 2026-11-26 | 2026-12-01 | DAM3-C-B5-E-853 |  |  |  |  | 47.8d | 0d | Electrician [64 h]; Construction Cost [16925.9] | 16,925.94 |  |  |  |  |  |  | 05 | 05 | 02 |
| DAM3-C-B5-E-913 |  | Installation of LV Cables | 4d | 2026-12-15 | 2026-12-20 | DAM3-C-B5-E-903 |  |  |  |  | 53.8d | 0d | Electrician [64 h]; Construction Cost [36390] | 36,389.98 |  |  |  |  |  |  | 05 | 05 | 02 |
|  | 2 | **SECOND STAGE** |  | 2026-10-21 | 2026-12-27 |  |  |  |  |  |  |  |  |  |  |  |  |  |  |  |  |  |  |
| DAM3-C-B5-E-1350 |  | Installation of Solar power plant | 14d | 2026-10-21 | 2026-11-05 | DAM3-C-B6-E-730 |  |  |  |  | 39.5d | 0d | Plumber [112 h]; Construction Cost [253269] | 253,268.71 |  |  |  |  |  |  | 05 | 05 | 02 |
| DAM3-C-B5-E-863 |  | Installation of Wiring Devices | 4d | 2026-11-08 | 2026-11-11 | DAM3-C-B5-E-873, DAM3-C-B5-A-1500 |  |  |  |  | 47.8d | 0d | Electrician [64 h]; Construction Cost [19435.1] | 19,435.09 |  |  |  | H1.C.K1.00.EM.G.3020 |  | 1 | 05 | 05 | 02 |
| DAM3-C-B5-E-893 |  | Installation of Disconnect Switches | 2d | 2026-11-12 | 2026-11-14 | DAM3-C-B5-E-863 |  |  |  |  | 47.8d | 0d | Electrician [32 h]; Construction Cost [30236] | 30,235.95 |  |  |  |  |  |  | 05 | 05 | 02 |
| DAM3-C-B5-E-813 |  | Installation of Fire Alarm Control Panel | 4d | 2026-11-17 | 2026-11-21 | DAM3-C-B5-E-833 |  |  |  |  | 47.8d | 0d | Electrician [64 h]; Construction Cost [19451.4] | 19,451.37 |  |  |  | H1.C.K1.00.EL.X.4120 |  | 1 | 05 | 05 | 02 |
| DAM3-C-B5-E-823 |  | Installation of Fire Detectors & Accessories | 4d | 2026-11-22 | 2026-11-25 | DAM3-C-B5-E-813 |  |  |  |  | 47.8d | 0d | Electrician [64 h]; Construction Cost [56740.4] | 56,740.37 |  |  |  | H1.C.K1.00.EL.G.3020 |  | 1 | 05 | 05 | 02 |
| DAM3-C-B5-E-843 |  | Installation of Lighting fixtures | 4d | 2026-12-01 | 2026-12-06 | DAM3-C-B5-E-923 |  |  |  |  | 47.8d | 0d | Electrician [64 h]; Construction Cost [76166.7] | 76,166.74 |  |  |  | H1.C.K1.00.EM.G.3010 |  | 1 | 05 | 05 | 02 |
| DAM3-C-B5-E-883 |  | Installation of Main Distribution Board | 2d | 2026-12-06 | 2026-12-08 | DAM3-C-B5-E-843 |  |  |  |  | 47.8d | 0d | Electrician [32 h]; Construction Cost [32472.7] | 32,472.73 |  |  |  | H1.C.K1.00.EM.G.2020 |  | 1 | 05 | 05 | 02 |
| DAM3-C-B5-E-933 |  | Installation of LP-1 Panel | 2d | 2026-12-08 | 2026-12-10 | DAM3-C-B5-E-883 |  |  |  |  | 47.8d | 0d | Electrician [32 h]; Construction Cost [18403.5] | 18,403.54 |  |  |  | H1.C.K1.00.EM.G.2020 |  | 1 | 05 | 05 | 02 |
| DAM3-C-B5-E-943 |  | Installation of PP-AC panel | 2d | 2026-12-10 | 2026-12-13 | DAM3-C-B5-E-933 |  |  |  |  | 47.8d | 0d | Electrician [32 h]; Construction Cost [21648.5] | 21,648.48 |  |  |  | H1.C.K1.00.EM.G.2020 |  | 1 | 05 | 05 | 02 |
| DAM3-C-B5-E-1340 |  | Installation of CCTV System | 7d | 2026-12-13 | 2026-12-21 | DAM3-C-B5-E-943 |  |  |  |  | 52.8d | 44.6d | Plumber [112 h]; Construction Cost [76349.2] | 76,349.24 |  |  |  |  |  |  | 05 | 05 | 02 |
| DAM3-C-B5-E-903 |  | Installation of Telephone Cabinet | 2d | 2026-12-13 | 2026-12-15 | DAM3-C-B5-E-943 |  |  |  |  | 47.8d | 0d | Electrician [32 h]; Construction Cost [26991.1] | 26,991.08 |  |  |  |  |  | 1 | 05 | 05 | 02 |
| DAM3-C-B5-E-963 |  | Installation of Access Control System | 4d | 2026-12-15 | 2026-12-20 | DAM3-C-B5-E-903 |  |  |  |  | 47.8d | 0d | Electrician [64 h]; Construction Cost [27616.9] | 27,616.86 |  |  |  | H1.C.K1.00.EM.G.2040 |  | 1 | 05 | 05 | 02 |
| DAM3-C-B5-E-973 |  | Monitor Modules for Fire Alarm | 2d | 2026-12-20 | 2026-12-22 | DAM3-C-B5-E-963 |  |  |  |  | 47.8d | 0d | Electrician [32 h]; Construction Cost [3882.38] | 3,882.38 |  |  |  | H1.C.K1.00.EM.G.2040 |  | 1 | 05 | 05 | 02 |
| DAM3-C-B5-E-983 |  | Line Isolator Modules for Fire Alarm | 2d | 2026-12-22 | 2026-12-24 | DAM3-C-B5-E-973 |  |  |  |  | 47.8d | 0d | Electrician [32 h]; Construction Cost [185.4] | 185.4 |  |  |  | H1.C.K1.00.EM.G.2040 |  | 1 | 05 | 05 | 02 |
| DAM3-C-B5-E-993 |  | Firewarning flash light with sounder; wall mounted, Weather proof | 2d | 2026-12-24 | 2026-12-27 | DAM3-C-B5-E-983 |  |  |  |  | 47.8d | 39.6d | Electrician [32 h]; Construction Cost [3082.69] | 3,082.69 |  |  |  | H1.C.K1.00.EM.G.2040 |  | 1 | 05 | 05 | 02 |

| ID | WBS | Activity | Duration | Start | Finish | Predecessors | Complete | Planned start | Planned finish | Resources | Cost | Actual cost | 00 Activity ID | AMH Tender Act. ID | Tender Original Duration | Zone # | Phasing Code Category | Discipline | Project component code |
| --- | --- | --- | --- | --- | --- | --- | --- | --- | --- | --- | --- | --- | --- | --- | --- | --- | --- | --- | --- |
|  | 3 | **BLOCK B4** |  | 2026-02-17 | 2027-01-03 |  |  |  |  |  |  |  |  |  |  |  |  |  |  |
|  | 1 | **STRUCTURAL** |  | 2026-02-17 | 2026-11-05 |  |  |  |  |  |  |  |  |  |  |  |  |  |  |
|  | 1 | **FOOTING** |  | 2026-02-17 | 2026-04-30 |  |  |  |  |  |  |  |  |  |  |  |  |  |  |
| DAM3-C-B4-S-210 |  | Excavation for footings | 4d | 2026-02-17 A | 2026-03-24 A | DAM3-C-B5-S-250 | 100% | 2026-03-22 | 2026-03-26 | General Labour [112 h]; Equipment Operator [112 h]; Truck [32 h]; Excavator [32 h]; Mini Roller Compactor [32 h]; Construction Cost [89859.6] | 89,859.61 | 89,859.61 | H1.C.K1.00.SW.F.1010 | PH1-MHR-ST-640 | 12 | 1 | 05 | 01 | 03 |
| DAM3-C-B4-S-6183 |  | Soil replacement - rock fill | 4d | 2026-03-26 A | 2026-03-29 A | DAM3-C-B4-S-210 | 100% | 2026-04-04 | 2026-04-07 | General Labour [256 h]; Truck [64 h]; Mini Roller Compactor [64 h]; Equipment Operator [256 h]; Wheel Loader [64 h]; Construction Cost [179062] | 179,061.91 | 179,061.91 | H1.C.K1.00.SW.F.1060 | PH1-MHR-ST-645 | 15 | 1 | 05 | 01 | 03 |
| DAM3-C-B4-S-6193 |  | Engineering fill | 4d | 2026-04-02 A | 2026-04-05 A | DAM3-C-B4-S-6183, DAM3-C-B4-S-6183 FF, DAM3-C-B4-S-6183 SS | 100% | 2026-04-07 | 2026-04-11 | General Labour [256 h]; Truck [64 h]; Mini Roller Compactor [64 h]; Equipment Operator [256 h]; Wheel Loader [64 h]; Construction Cost [46046.2] | 46,046.19 | 46,046.19 | H1.C.K1.00.SW.F.1060 | PH1-MHR-ST-645 | 15 | 1 | 05 | 01 | 03 |
| DAM3-C-B4-S-1037 |  | Anti Termite Below Footings | 1d | 2026-04-15 A | 2026-04-15 A | DAM3-C-B4-S-6193 | 100% | 2026-04-20 | 2026-04-20 | Mason [16 h]; Construction Cost [11905.5] | 11,905.55 | 11,905.55 | H1.C.K1.00.SW.F.1030 | PH1-MHR-ST-1020 | 10 | 1 | 05 | 01 | 03 |
| DAM3-C-B4-S-797 |  | Lean Concrete Below Footings | 2d | 2026-04-15 A | 2026-04-15 A | DAM3-C-B4-S-947 | 100% | 2026-04-22 | 2026-04-23 | Mason [32 h]; Construction Cost [8229.34] | 8,229.34 | 8,229.34 | H1.C.K1.00.SW.F.1030 | PH1-MHR-ST-1020 | 10 | 1 | 05 | 01 | 03 |
| DAM3-C-B4-S-947 |  | Vapour Barrier for Footings | 1d | 2026-04-15 A | 2026-04-15 A | DAM3-C-B4-S-1037 | 100% | 2026-04-21 | 2026-04-21 | General Labour [16 h]; Construction Cost [7940.1] | 7,940.1 | 7,940.1 | H1.C.K1.00.SW.F.1040 | PH1-MHR-ST-1080 | 15 | 1 | 05 | 01 | 03 |
| DAM3-C-B4-S-857 |  | Formwork for Footings | 4d | 2026-04-20 A | 2026-04-22 A | DAM3-C-B4-S-847 | 100% | 2026-04-29 | 2026-05-03 | Carperter [64 h]; Construction Cost [25461.2] | 25,461.25 | 25,461.25 |  |  |  | 1 | 05 | 01 | 03 |
| DAM3-C-B4-S-847 |  | Rebar for Footings | 4d | 2026-04-23 A | 2026-04-28 A | DAM3-C-B4-S-797 | 100% | 2026-04-28 | 2026-05-02 | Steel Fixer [64 h]; Construction Cost [101845] | 101,844.98 | 101,844.98 |  |  |  | 1 | 05 | 01 | 03 |
| DAM3-C-B4-S-807 |  | Pouring Concrete for Footings | 1d | 2026-04-30 A | 2026-04-30 A | DAM3-C-B4-S-857 | 100% | 2026-05-02 | 2026-05-02 | Carperter [16 h]; Mason [16 h]; Steel Fixer [16 h]; Concrete Mixer [8 h]; Equipment Operator [16 h]; Construction Cost [127306] | 127,306.23 | 127,306.23 | H1.C.K1.00.RC.F.1010 | PH1-MHR-ST-1030 | 21 | 1 | 05 | 01 | 03 |
|  | 2 | **COLUMN NECK** |  | 2026-04-23 | 2026-05-19 |  |  |  |  |  |  |  |  |  |  |  |  |  |  |
| DAM3-C-B4-S-897 |  | Rebar for column neck | 2d | 2026-04-23 A | 2026-04-28 A | DAM3-C-B4-S-807 | 100% | 2026-05-04 | 2026-05-06 | Steel Fixer [32 h]; Construction Cost [14919.2] | 14,919.19 | 14,919.19 |  |  |  | 1 | 05 | 01 | 03 |
| DAM3-C-B4-S-907 |  | Formwork for column neck | 2d | 2026-05-03 A | 2026-05-05 A | DAM3-C-B4-S-897 | 100% | 2026-05-07 | 2026-05-09 | Carperter [32 h]; Construction Cost [9946.13] | 9,946.13 | 9,946.13 |  |  |  | 1 | 05 | 01 | 03 |
| DAM3-C-B4-S-887 |  | Pouring Concrete for column neck | 1d | 2026-05-05 A | 2026-05-05 A | DAM3-C-B4-S-907 | 100% | 2026-05-09 | 2026-05-09 | Mason [16 h]; Carperter [16 h]; Concrete Mixer [8 h]; Steel Fixer [16 h]; Equipment Operator [16 h]; Construction Cost [24865.3] | 24,865.31 | 24,865.31 | H1.C.K1.00.RC.F.1110 | PH1-MHR-ST-1030 | 21 | 1 | 05 | 01 | 03 |
| DAM3-C-B4-S-937 |  | Damp proof /Bitumin paint on Footings & column neck | 2d | 2026-05-07 A | 2026-05-10 A | DAM3-C-B4-S-887 | 100% | 2026-05-10 | 2026-05-11 | Painter [32 h]; Construction Cost [24777.7] | 24,777.73 | 24,777.73 | H1.C.K1.00.SW.F.1050 | PH1-MHR-ST-1080 | 15 | 1 | 05 | 01 | 03 |
| DAM3-C-B4-S-997 |  | Backfilling / Compaction up to Bottom of Grade Beams | 7d | 2026-05-13 A | 2026-05-19 A | DAM3-C-B4-S-937 | 100% | 2026-05-16 | 2026-05-23 | General Labour [256 h]; Truck [128 h]; Mini Roller Compactor [128 h]; Equipment Operator [256 h]; Wheel Loader [128 h]; Construction Cost [46046.2] | 46,046.19 | 46,046.19 | H1.C.K1.00.SW.F.1060 | PH1-MHR-ST-645 | 15 | 1 | 05 | 01 | 03 |
|  | 3 | **GRADE BEAM** |  | 2026-05-20 | 2026-06-09 |  |  |  |  |  |  |  |  |  |  |  |  |  |  |
| DAM3-C-B4-S-1047 |  | Anti Termite Below Grade Beams | 1d | 2026-05-20 A | 2026-05-20 A | DAM3-C-B4-S-997 | 100% | 2026-05-23 | 2026-05-23 | Mason [16 h]; Construction Cost [11905.5] | 11,905.55 | 11,905.55 | H1.C.K1.00.SW.F.1030 | PH1-MHR-ST-1020 | 10 | 1 | 05 | 01 | 03 |
| DAM3-C-B4-S-817 |  | Lean Concrete Below Grade Beams | 2d | 2026-05-20 A | 2026-05-20 A | DAM3-C-B4-S-967 | 100% | 2026-05-30 | 2026-05-31 | Mason [32 h]; Construction Cost [4431.19] | 4,431.19 | 4,431.19 | H1.C.K1.00.SW.F.1130 | PH1-MHR-ST-1020 | 10 | 1 | 05 | 01 | 03 |
| DAM3-C-B4-S-967 |  | Vapour barrier for Grade Beams | 2d | 2026-05-20 A | 2026-05-20 A | DAM3-C-B4-S-1047 | 100% | 2026-05-24 | 2026-05-25 | General Labour [32 h]; Construction Cost [5293.4] | 5,293.4 | 5,293.4 | H1.C.K1.00.SW.F.1040 | PH1-MHR-ST-1080 | 15 | 1 | 05 | 01 | 03 |
| DAM3-C-B4-S-867 |  | Rebar for Grade Beams | 5d | 2026-05-21 A | 2026-05-24 A | DAM3-C-B4-S-817 | 100% | 2026-05-30 | 2026-06-03 | Steel Fixer [80 h]; Construction Cost [27194.5] | 27,194.46 | 27,194.46 |  |  |  | 1 | 05 | 01 | 03 |
| DAM3-C-B4-S-877 |  | Formwork for Grade Beams | 2d | 2026-05-24 A | 2026-06-02 A | DAM3-C-B4-S-867 | 100% | 2026-06-04 | 2026-06-06 | Carperter [32 h]; Construction Cost [6798.61] | 6,798.61 | 6,798.61 |  |  |  | 1 | 05 | 01 | 03 |
| DAM3-C-B4-S-1027 |  | Anchor bolts installation | 2d | 2026-05-31 A | 2026-06-01 A | DAM3-C-B4-S-877 SS | 100% | 2026-06-03 | 2026-06-04 | Carperter [32 h]; Construction Cost [57238.8] | 57,238.83 | 57,238.83 |  |  |  | 1 | 05 | 01 | 03 |
| DAM3-C-B4-S-827 |  | Pouring Concrete for Grade Beams | 1d | 2026-06-03 A | 2026-06-03 A | DAM3-C-B4-S-877, DAM3-C-B4-S-1027 | 100% | 2026-06-06 | 2026-06-06 | Mason [16 h]; Carperter [16 h]; Concrete Mixer [8 h]; Steel Fixer [16 h]; Equipment Operator [16 h]; Construction Cost [33993.1] | 33,993.09 | 33,993.09 | H1.C.K1.00.RC.F.1110 | PH1-MHR-ST-1030 | 21 | 1 | 05 | 01 | 03 |
| DAM3-C-B4-S-977 |  | Damp proof /Bitumin paint on Grade Beams | 5d | 2026-06-07 A | 2026-06-09 A | DAM3-C-B4-S-827 | 100% | 2026-06-09 | 2026-06-14 | Painter [80 h]; Construction Cost [24777.7] | 24,777.73 | 24,777.73 | H1.C.K1.00.SW.F.1050 | PH1-MHR-ST-1080 | 15 | 1 | 05 | 01 | 03 |

| ID | WBS | Activity | Duration | Start | Finish | Predecessors | Complete | Planned start | Planned finish | Total float | Free float | Resources | Cost | Actual cost | Zone # | Phasing Code Category | Discipline | Project component code | 00 Activity ID | AMH Tender Act. ID | Tender Original Duration | project summary-4 | PS (su & rbf)-4 | New code for weekly report-4 | New discipline code-4 |
| --- | --- | --- | --- | --- | --- | --- | --- | --- | --- | --- | --- | --- | --- | --- | --- | --- | --- | --- | --- | --- | --- | --- | --- | --- | --- |
|  | 5 | **SLAB ON GRADE** |  | 2026-06-14 | 2026-11-05 |  |  |  |  |  |  |  |  |  |  |  |  |  |  |  |  |  |  |  |  |
| DAM3-C-B4-S-1007 |  | Backfilling / Compaction for Slab on Grade | 7d | 2026-06-14 A | 2026-06-22 A | DAM3-C-B4-S-977 | 100% | 2026-06-16 | 2026-06-23 |  |  | Mini Roller Compactor [128 h]; General Labour [256 h]; Equipment Operator [256 h]; Wheel Loader [128 h]; Truck [128 h]; Construction Cost [23023.1] | 23,023.09 | 23,023.09 | 1 | 05 | 01 | 03 |  |  |  |  |  |  |  |
| DAM3-C-B4-S-837 |  | Pouring Concrete for Ground Slab | 4d | 2026-07-29 A | 2026-08-01 A | DAM3-C-B4-S-987 | 100% | 2026-08-02 | 2026-08-05 |  |  | Mason [64 h]; Carperter [64 h]; Steel Fixer [64 h]; Concrete Mixer [32 h]; Equipment Operator [64 h]; Construction Cost [344195] | 344,195.21 | 344,195.21 | 1 | 05 | 01 | 03 | H1.C.A1.06.RC.G.1210 | PH1-MHR-ST-496 | 24 |  |  |  |  |
| DAM3-C-B4-S-957 |  | Anti Termite Treatment below Ground Slab | 1d | 2026-07-29 A | 2026-08-01 A | DAM3-C-B4-S-1007 | 100% | 2026-07-29 | 2026-07-29 |  |  | General Labour [16 h]; Construction Cost [15874.1] | 15,874.08 | 15,874.08 | 1 | 05 | 01 | 03 | H1.C.A1.06.SW.F.1220 | PH1-MHR-ST-645 | 15 |  |  |  |  |
| DAM3-C-B4-S-987 |  | Vapour barrier for below Ground Slab | 2d | 2026-07-29 A | 2026-08-01 A | DAM3-C-B4-S-957 | 100% | 2026-07-30 | 2026-08-01 |  |  | General Labour [32 h]; Construction Cost [13233.5] | 13,233.49 | 13,233.49 | 1 | 05 | 01 | 03 |  |  |  |  |  |  |  |
| DAM3-C-B4-S-1017 |  | Concrete pad | 7d | 2026-10-29 | 2026-11-05 | DAM3-C-B4-A-260 |  |  |  | 9.5d | 0d | Mason [112 h]; Construction Cost [907.11] | 907.11 |  |  | 05 | 01 | 03 |  |  |  |  |  |  |  |
|  | 4 | **COLUMNS & BEAMS** |  | 2026-05-21 | 2026-09-14 |  |  |  |  |  |  |  |  |  |  |  |  |  |  |  |  |  |  |  |  |
| DAM3-C-B4-S-6101 |  | Rebar for Tie Beams | 4d | 2026-05-21 A | 2026-05-24 A | DAM3-C-B4-S-5103 | 100% | 2026-07-01 | 2026-07-05 |  |  | Steel Fixer [64 h]; Construction Cost [7263.64] | 7,263.64 | 7,263.64 | 1 | 05 | 01 | 03 |  |  |  | 3 | 1 | 4 | 1 |
| DAM3-C-B4-S-6102 |  | Formwork for Tie Beams | 2d | 2026-05-24 A | 2026-06-02 A | DAM3-C-B4-S-6101 | 100% | 2026-07-06 | 2026-07-07 |  |  | Carperter [32 h]; Construction Cost [1815.91] | 1,815.91 | 1,815.91 | 1 | 05 | 01 | 03 |  |  |  | 3 | 1 | 4 | 1 |
| DAM3-C-B4-S-6103 |  | Pouring Concrete for Tie Beams | 1d | 2026-06-03 A | 2026-06-03 A | DAM3-C-B4-S-6102 | 100% | 2026-07-08 | 2026-07-08 |  |  | Mason [16 h]; Carperter [16 h]; Concrete Mixer [32 h]; Steel Fixer [16 h]; Equipment Operator [16 h]; Construction Cost [9079.54] | 9,079.54 | 9,079.54 | 1 | 05 | 01 | 03 | H1.C.K1.00.RC.F.1110 | PH1-MHR-ST-1030 | 21 | 3 | 1 | 4 | 1 |
| DAM3-C-B4-S-5101 |  | Rebar for column | 5d | 2026-06-22 A | 2026-07-02 A | DAM3-C-B4-S-1007 | 100% | 2026-07-18 | 2026-07-22 |  |  | Steel Fixer [112 h]; Construction Cost [20144] | 20,144.05 | 20,144.05 | 1 | 05 | 01 | 03 |  |  |  | 3 | 1 | 4 | 1 |
| DAM3-C-B4-S-5102 |  | Formwork for column | 4d | 2026-06-29 A | 2026-07-05 A | DAM3-C-B4-S-5101 | 100% | 2026-07-23 | 2026-07-27 |  |  | Carperter [64 h]; Construction Cost [5036.01] | 5,036.01 | 5,036.01 | 1 | 05 | 01 | 03 |  |  |  | 3 | 1 | 4 | 1 |
| DAM3-C-B4-S-5103 |  | Pouring Concrete for column | 1d | 2026-07-09 A | 2026-07-12 A | DAM3-C-B4-S-5102 | 100% | 2026-07-28 | 2026-07-28 |  |  | Mason [16 h]; Carperter [16 h]; Concrete Mixer [32 h]; Steel Fixer [16 h]; Equipment Operator [16 h]; Construction Cost [25180.1] | 25,180.06 | 25,180.06 | 1 | 05 | 01 | 03 | H1.C.K1.00.RC.F.1110 | PH1-MHR-ST-1030 | 21 | 3 | 1 | 4 | 1 |
| DAM3-C-B4-S-6113 |  | Rebar for Beams | 4d | 2026-08-30 A | 2026-09-01 A | DAM3-C-B4-S-6103 | 100% | 2026-08-30 | 2026-09-02 |  |  | Steel Fixer [64 h]; Construction Cost [13379.1] | 13,379.11 | 13,379.11 | 1 | 05 | 01 | 03 |  |  |  | 3 | 1 | 4 | 1 |
| DAM3-C-B4-S-6123 |  | Formwork for Beams | 2d | 2026-09-02 A | 2026-09-08 A | DAM3-C-B4-S-6113, DAM3-C-B4-S-6113 FF | 100% | 2026-09-03 | 2026-09-05 |  |  | Carperter [32 h]; Construction Cost [3344.77] | 3,344.77 | 3,344.77 | 1 | 05 | 01 | 03 |  |  |  | 3 | 1 | 4 | 1 |
| DAM3-C-B4-S-6133 |  | Pouring Concrete for Beams | 1d | 2026-09-08 A | 2026-09-14 A | DAM3-C-B4-S-6123, DAM3-C-B4-S-6123 FF | 100% | 2026-09-08 | 2026-09-09 |  |  | Mason [16 h]; Carperter [16 h]; Concrete Mixer [32 h]; Steel Fixer [16 h]; Equipment Operator [16 h]; Construction Cost [16723.9] | 16,723.88 | 16,723.88 | 1 | 05 | 01 | 03 | H1.C.K1.00.RC.F.1110 | PH1-MHR-ST-1030 | 21 | 3 | 1 | 4 | 1 |
|  | 5 | **STRUCTURAL STEEL** |  | 2026-06-24 | 2026-10-28 |  |  |  |  |  |  |  |  |  |  |  |  |  |  |  |  |  |  |  |  |
| DAM3-C-B4-A-210 |  | Installation of columns | 3d | 2026-06-24 A | 2026-06-24 A | DAM3-C-B4-S-837, DAM3-C-B5-SS-280 | 100% | 2026-07-13 | 2026-07-15 |  |  | Structural Steel Fixer [80 h]; General Labour [80 h]; Equipment Operator [80 h]; Mobile Crane [24 h]; Construction Cost [217508] | 217,507.55 | 217,507.55 |  | 05 | 02 | 03 |  |  |  |  |  |  |  |
| DAM3-C-B4-A-220 |  | Installation of raft and purlins | 5d | 2026-06-25 A | 2026-06-25 A | DAM3-C-B4-A-210 | 100% | 2026-07-16 | 2026-07-21 |  |  | Structural Steel Fixer [160 h]; General Labour [160 h]; Mobile Crane [56 h]; Equipment Operator [160 h]; Construction Cost [326261] | 326,261.32 | 326,261.32 |  | 05 | 02 | 03 |  |  |  |  |  |  |  |
| DAM3-C-B4-A-1430 |  | Intumescent paint to steel works | 7d | 2026-07-08 A | 2026-07-14 A | DAM3-E-ST-A-1700, DAM3-C-B4-A-220 | 100% | 2026-07-16 | 2026-07-23 |  |  | Painter [112 h]; Construction Cost [317760] | 317,759.56 | 317,759.56 | 1 | 05 | 02 | 03 | H1.C.A1.SA.FI.G.0730 |  |  |  |  |  |  |
| DAM3-C-B4-A-250 |  | Installation of roof sheet | 5d | 2026-07-26 A | 2026-07-30 A | DAM3-C-B4-A-230, DAM3-C-B4-A-1430, DAM3-C-B4-S-6133 | 100% | 2026-08-27 | 2026-09-01 |  |  | Roof sheet worker [160 h]; General Labour [160 h]; Mobile Crane [40 h]; Equipment Operator [160 h]; Construction Cost [217508] | 217,507.55 | 217,507.55 |  | 05 | 02 | 03 |  |  |  |  |  |  |  |
| DAM3-C-B4-SS-1030 |  | Steel members for external platform | 7d | 2026-09-01 A | 2026-09-02 A | DAM3-C-B4-A-1440 | 100% | 2026-09-12 | 2026-09-19 |  |  | Construction Cost [18670.8]; General Labour [112 h]; Mobile Crane [56 h]; Structural Steel Fixer [112 h]; Equipment Operator [112 h] | 18,670.78 | 18,670.78 | 1 | 05 | 02 | 03 | H1.C.A1.SA.FI.G.0730 |  |  |  |  |  |  |
| DAM3-C-B4-A-1440 |  | Steel members for office area | 7d | 2026-10-01 A | 2026-10-04 A | DAM3-C-B4-A-1430, DAM3-C-B4-A-220 | 100% | 2026-10-01 | 2026-10-08 |  |  | Construction Cost [115805]; Structural Steel Fixer [112 h]; Mobile Crane [56 h]; General Labour [112 h]; Equipment Operator [112 h] | 115,805.2 | 115,805.2 | 1 | 05 | 02 | 03 | H1.C.A1.SA.FI.G.0730 |  |  |  |  |  |  |
| DAM3-C-B4-A-240 |  | Installation of wall sandwich panel | 5d | 2026-10-03 A | 2026-10-28 A | DAM3-C-B4-A-260 | 100% | 2026-10-26 | 2026-10-31 |  |  | Sandwich panel worker [112 h]; General Labour [112 h]; Mobile Crane [40 h]; Equipment Operator [112 h]; Construction Cost [326261] | 326,261.32 | 326,261.32 |  | 05 | 02 | 03 |  |  |  |  |  |  |  |
| DAM3-C-B4-SS-1040 |  | Epoxy paint for external platform | 5d | 2026-10-13 | 2026-10-18 | DAM3-C-B4-SS-1030, DAM3-C-B4-SS-1030 FF |  |  |  | 21.5d | 9d | Painter [80 h]; Construction Cost [3734.16] | 3,734.16 |  | 1 | 05 | 02 | 03 | H1.C.A1.SA.FI.G.0730 |  |  |  |  |  |  |
| DAM3-C-B4-SS-1020 |  | Epoxy paint to steel members at office area | 7d | 2026-10-21 | 2026-10-28 | DAM3-C-B4-A-1440, DAM3-C-B5-SS-1040, DAM3-C-B5-SS-1020 |  |  |  | 9.5d | 0d | Painter [112 h]; Construction Cost [23161] | 23,161.04 |  | 1 | 05 | 02 | 03 | H1.C.A1.SA.FI.G.0730 |  |  |  |  |  |  |

| ID | WBS | Activity | Duration | Start | Finish | Predecessors | Complete | Planned start | Planned finish | Total float | Free float | Resources | Cost | Actual cost | Zone # | Phasing Code Category | Discipline | Project component code | 00 Activity ID |
| --- | --- | --- | --- | --- | --- | --- | --- | --- | --- | --- | --- | --- | --- | --- | --- | --- | --- | --- | --- |
|  | 2 | **ARCHITECTURAL** |  | 2026-08-03 | 2026-12-24 |  |  |  |  |  |  |  |  |  |  |  |  |  |  |
|  | 1 | **MASONARY WORKS** |  | 2026-08-05 | 2026-09-01 |  |  |  |  |  |  |  |  |  |  |  |  |  |  |
| DAM3-C-B4-A-1030 |  | Block work at toilet area | 7d | 2026-08-05 A | 2026-08-24 A | DAM3-C-B4-A-260, DAM3-C-B4-SS-1040 | 100% | 2026-09-13 | 2026-09-20 |  |  | Mason [112 h]; Construction Cost [14436.3] | 14,436.31 | 14,436.31 | 1 | 05 | 03 | 03 |  |
| DAM3-C-B4-A-230 |  | Block work at factory area | 10d | 2026-08-05 A | 2026-08-10 A | DAM3-C-B4-S-837, DAM3-C-B4-A-220, DAM3-C-B5-A-290 | 100% | 2026-08-17 | 2026-08-27 |  |  | AAC panel erector [240 h]; General Labour [240 h]; Equipment Operator [240 h]; Mobile Crane [120 h]; Construction Cost [58338.7] | 58,338.72 | 58,338.72 |  | 05 | 03 | 03 |  |
| DAM3-C-B4-A-260 |  | Block work at office area | 7d | 2026-08-05 A | 2026-09-01 A | DAM3-C-B4-A-250, DAM3-C-B4-A-1440, DAM3-C-B4-SS-1020 | 100% | 2026-09-05 | 2026-09-12 |  |  | AAC panel erector [160 h]; General Labour [160 h]; Mobile Crane [56 h]; Equipment Operator [160 h]; Construction Cost [6179.18] | 6,179.18 | 6,179.18 |  | 05 | 03 | 03 |  |
|  | 5 | **WALL FINISHES** |  | 2026-09-24 | 2026-10-13 |  |  |  |  |  |  |  |  |  |  |  |  |  |  |
| DAM3-C-B4-A-1040 |  | Internal Wall Plaster | 10d | 2026-09-24 A | 2026-10-06 A | DAM3-C-B4-A-1030, DAM3-C-B4-E-643, DAM3-C-B4-S-1017, DAM3-C-B5-A-1780 | 100% | 2026-10-31 | 2026-11-10 |  |  | Mason [240 h]; Construction Cost [48590.2] | 48,590.16 | 48,590.16 | 1 | 05 | 03 | 03 | H1.C.A1.SA.FI.G.0710 |
| DAM3-C-B4-A-1090 |  | Paint to Plaster (Primer, Putty & First Coat) | 7d | 2026-10-07 A | 2026-10-13 A | DAM3-C-B4-A-1110 | 100% | 2026-11-24 | 2026-12-01 |  |  | Painter [112 h]; Construction Cost [44167.3] | 44,167.3 | 44,167.3 | 1 | 05 | 03 | 03 | H1.C.A1.SA.FI.G.0730 |
|  | 2 | **CIELING FINISHES** |  | 2026-11-11 | 2026-11-16 |  |  |  |  |  |  |  |  |  |  |  |  |  |  |
| DAM3-C-B4-A-1100 |  | Installation of Ceiling Gypsum Board | 5d | 2026-11-11 | 2026-11-16 | DAM3-C-B4-A-1080, DAM3-C-B4-S-1017 |  |  |  | 31.5d | 0d | Carperter [80 h]; Construction Cost [46792.3] | 46,792.3 |  | 1 | 05 | 03 | 03 | H1.C.A1.SA.FI.G.0820 |
|  | 6 | **FLOOR FINISHES** |  | 2026-10-05 | 2026-12-24 |  |  |  |  |  |  |  |  |  |  |  |  |  |  |
| DAM3-C-B4-A-1080 |  | Tiles for Toilet | 7d | 2026-10-05 A | 2026-10-10 A | DAM3-C-B4-A-1220 | 100% | 2026-11-08 | 2026-11-15 |  |  | Tile Fixer [112 h]; Construction Cost [46530.7] | 46,530.71 | 46,530.71 | 1 | 05 | 03 | 03 | H1.C.A1.SA.FI.G.0640 |
| DAM3-C-B4-A-1110 |  | Tiles for Office Area | 2d | 2026-11-17 | 2026-11-18 | DAM3-C-B4-A-1100 |  |  |  | 31.5d | 0d | Tile Fixer [32 h]; Construction Cost [26867.3] | 26,867.31 |  |  | 05 | 03 | 03 |  |
| DAM3-C-B4-A-1240 |  | Granite strip | 2d | 2026-11-19 | 2026-11-21 | DAM3-C-B4-A-1420, DAM3-C-B4-A-1110 |  |  |  | 31.5d | 0d | Tile Fixer [32 h]; Construction Cost [671.12] | 671.12 |  | 1 | 05 | 03 | 03 | H1.C.A1.SA.FI.G.0640 |
| DAM3-C-B4-A-1260 |  | Epoxy paint | 7d | 2026-12-17 | 2026-12-24 | DAM3-C-B4-A-1200, DAM3-C-B5-A-1670 |  |  |  | 31.5d | 25.4d | Painter [112 h]; Construction Cost [115420] | 115,419.76 |  |  | 05 | 03 | 03 |  |
|  | 3 | **DOORS & WINDOWS** |  | 2026-10-29 | 2026-11-14 |  |  |  |  |  |  |  |  |  |  |  |  |  |  |
| DAM3-C-B4-A-1420 |  | Window (CW1) | 7d | 2026-10-29 | 2026-11-05 | DAM3-C-B4-A-240 |  |  |  | 29.6d | 0d | Carperter [112 h]; Construction Cost [94173.2] | 94,173.21 |  |  | 05 | 03 | 03 |  |
| DAM3-C-B4-A-1050 |  | Roll up Shutter Door | 1d | 2026-11-07 | 2026-11-07 | DAM3-C-B4-A-1420 |  |  |  | 29.6d | 0d | Carperter [16 h]; Construction Cost [68619.2] | 68,619.2 |  |  | 05 | 03 | 03 |  |
| DAM3-C-B4-A-1060 |  | Supply and install (D5) 1000*2200mm single leaf steel door with door | 1d | 2026-11-08 | 2026-11-08 | DAM3-C-B4-A-1050 |  |  |  | 29.6d | 0d | Carperter [16 h]; Construction Cost [16016.2] | 16,016.16 |  |  | 05 | 03 | 03 |  |
| DAM3-C-B4-A-1120 |  | Supply and install (D4) 800*2200 mm single leaf aluminum door with door | 1d | 2026-11-09 | 2026-11-09 | DAM3-C-B4-A-1060 |  |  |  | 29.6d | 0d | Carperter [16 h]; Construction Cost [22737.8] | 22,737.85 |  |  | 05 | 03 | 03 |  |
| DAM3-C-B4-A-1130 |  | Supply and install (D7) 1000*2200 mm single leaf aluminum door with door | 1d | 2026-11-10 | 2026-11-10 | DAM3-C-B4-A-1120 |  |  |  | 29.6d | 0d | Carperter [16 h]; Construction Cost [7811.07] | 7,811.07 |  |  | 05 | 03 | 03 |  |
| DAM3-C-B4-A-1350 |  | Supply and install (D3) 1000*2200 mm single leaf aluminum door with door | 1d | 2026-11-11 | 2026-11-11 | DAM3-C-B4-A-1130 |  |  |  | 29.6d | 0d | Carperter [16 h]; Construction Cost [16016.2] | 16,016.16 |  |  | 05 | 03 | 03 |  |
| DAM3-C-B4-A-1360 |  | Supply and install fire rated 45 min (D2) 1200*2200 mm single leaf steel door | 1d | 2026-11-12 | 2026-11-12 | DAM3-C-B4-A-1350 |  |  |  | 29.6d | 0d | Carperter [16 h]; Construction Cost [16711.5] | 16,711.52 |  |  | 05 | 03 | 03 |  |
| DAM3-C-B4-A-1370 |  | Skylight fixtures installation | 1d | 2026-11-14 | 2026-11-14 | DAM3-C-B4-A-1360 |  |  |  | 29.6d | 16d | Carperter [16 h]; Construction Cost [6489.89] | 6,489.89 |  |  | 05 | 03 | 03 |  |

| ID | WBS | Activity | Duration | Start | Finish | Predecessors | Complete | Planned start | Planned finish | Total float | Free float | Resources | Cost | Actual cost | Phasing Code Category | Discipline | Project component code | Ordinal Start | Ordinal Finish | 00 Activity ID | Ordinal Duration | Zone # |
| --- | --- | --- | --- | --- | --- | --- | --- | --- | --- | --- | --- | --- | --- | --- | --- | --- | --- | --- | --- | --- | --- | --- |
|  | 4 | **WATER PROOFING WORKS** |  | 2026-11-07 | 2026-11-10 |  |  |  |  |  |  |  |  |  |  |  |  |  |  |  |  |  |
| DAM3-C-B4-A-1220 |  | Waterproofing membrane for toilets | 4d | 2026-11-07 | 2026-11-10 | DAM3-C-B4-M-820, DAM3-C-B4-A-1040 |  |  |  | 9.5d | 0d | General Labour [64 h]; Construction Cost [4879.02] | 4,879.02 |  | 05 | 03 | 03 |  |  |  |  |  |
|  | 7 | **METAL WORKS** |  | 2026-08-03 | 2026-12-03 |  |  |  |  |  |  |  |  |  |  |  |  |  |  |  |  |  |
| DAM3-C-B4-A-1160 |  | Galvanised Steel Gratings | 2d | 2026-08-03 A | 2026-08-03 A | DAM3-C-B4-A-1170 | 100% | 2026-11-12 | 2026-11-15 |  |  | Steel Fixer [32 h]; General Labour [32 h]; Construction Cost [6455.16] | 6,455.16 | 6,455.16 | 05 | 03 | 03 |  |  |  |  |  |
| DAM3-C-B4-A-1150 |  | Steel Ladder | 2d | 2026-11-22 | 2026-11-23 | DAM3-C-B4-A-1240 |  |  |  | 31.5d | 0d | Steel Fixer [32 h]; General Labour [32 h]; Construction Cost [9839.16] | 9,839.16 |  | 05 | 03 | 03 |  |  |  |  |  |
| DAM3-C-B4-A-1250 |  | Steel railing works | 4d | 2026-11-24 | 2026-11-28 | DAM3-C-B4-A-1150 |  |  |  | 31.5d | 0d | Steel Fixer [64 h]; General Labour [64 h]; Construction Cost [1533.98] | 1,533.98 |  | 05 | 03 | 03 |  |  |  |  |  |
| DAM3-C-B4-A-1170 |  | Aluminium composite panel | 5d | 2026-11-29 | 2026-12-03 | DAM3-C-B4-A-1250 |  |  |  | 31.5d | 0d | Steel Fixer [80 h]; General Labour [80 h]; Construction Cost [175889] | 175,888.76 |  | 05 | 03 | 03 |  |  |  |  |  |
|  | 8 | **SPECIALTIES** |  | 2026-12-05 | 2026-12-16 |  |  |  |  |  |  |  |  |  |  |  |  |  |  |  |  |  |
| DAM3-C-B4-A-1180 |  | Installation of fittings | 7d | 2026-12-05 | 2026-12-12 | DAM3-C-B4-A-1160 |  |  |  | 31.5d | 0d | Plumber [112 h]; Construction Cost [22981.3] | 22,981.27 |  | 05 | 03 | 03 |  |  |  |  |  |
| DAM3-C-B4-A-1410 |  | Identification sign; ID01 & ID02 | 3d | 2026-12-13 | 2026-12-15 | DAM3-C-B4-A-1180 |  |  |  | 31.5d | 0d | Mason [48 h]; Construction Cost [9630.56] | 9,630.56 |  | 05 | 03 | 03 |  |  |  |  |  |
| DAM3-C-B4-A-1200 |  | Furniture Installation | 1d | 2026-12-16 | 2026-12-16 | DAM3-C-B4-A-1410 |  |  |  | 31.5d | 0d | General Labour [16 h]; Mason [16 h]; Construction Cost [12468.8] | 12,468.83 |  | 05 | 03 | 03 |  |  |  |  |  |
|  | 3 | **MECHANICAL** |  | 2026-06-25 | 2026-12-08 |  |  |  |  |  |  |  |  |  |  |  |  |  |  |  |  |  |
|  | 1 | **HVAC** |  | 2026-11-19 | 2026-12-05 |  |  |  |  |  |  |  |  |  |  |  |  |  |  |  |  |  |
|  | 1 | **FIRST STAGE** |  | 2026-11-26 | 2026-11-30 |  |  |  |  |  |  |  |  |  |  |  |  |  |  |  |  |  |
| DAM3-C-B4-M-760 |  | Installation of HVAC Ducts | 2d | 2026-11-26 | 2026-11-28 | DAM3-C-B4-M-780 |  |  |  | 51.2d | 0d | Ductman [32 h]; Construction Cost [149489] | 149,489.33 |  | 05 | 04 | 03 | 0 | 0 | H1.C.A1.0A.MH.G.1040 | 0 | 1 |
| DAM3-C-B4-M-790 |  | Installation of Duct insulation | 2d | 2026-11-29 | 2026-11-30 | DAM3-C-B4-M-760 |  |  |  | 51.2d | 0d | Ductman [32 h]; Construction Cost [21205.4] | 21,205.4 |  | 05 | 04 | 03 |  |  |  |  |  |
|  | 2 | **SECOND STAGE** |  | 2026-11-19 | 2026-12-05 |  |  |  |  |  |  |  |  |  |  |  |  |  |  |  |  |  |
| DAM3-C-B4-M-750 |  | Installation of Exhaust Fans | 2d | 2026-11-19 | 2026-11-21 | DAM3-C-B4-A-1090 |  |  |  | 51.2d | 0d | AC Technician [32 h]; Construction Cost [7938.56] | 7,938.56 |  | 05 | 04 | 03 | 0 | 0 | H1.C.A1.0A.MH.X.4050 | 0 | 1 |
| DAM3-C-B4-M-780 |  | Installation of Wall Propeller Type Exhaust Fan | 4d | 2026-11-22 | 2026-11-25 | DAM3-C-B4-M-750 |  |  |  | 51.2d | 0d | AC Technician [64 h]; Construction Cost [46831.6] | 46,831.64 |  | 05 | 04 | 03 |  |  |  |  |  |
| DAM3-C-B4-M-770 |  | Installation of Diffuser | 2d | 2026-12-01 | 2026-12-02 | DAM3-C-B4-M-790 |  |  |  | 51.2d | 0d | Ductman [32 h]; Construction Cost [2144] | 2,144 |  | 05 | 04 | 03 | 0 | 0 | H1.C.A1.0A.MH.G.3010 | 0 | 1 |
| DAM3-C-B4-M-960 |  | Supply, install, test and commission door grilles & exhaust louvers | 2d | 2026-12-03 | 2026-12-05 | DAM3-C-B4-M-770 |  |  |  | 51.2d | 0d | Ductman [32 h]; Construction Cost [5574.4] | 5,574.4 |  | 05 | 04 | 03 | 0 | 0 | H1.C.A1.0A.MH.G.3010 | 0 | 1 |
|  | 2 | **FIRE FIGHTING SYSTEM** |  | 2026-09-30 | 2026-12-08 |  |  |  |  |  |  |  |  |  |  |  |  |  |  |  |  |  |
|  | 1 | **FIRST STAGE** |  | 2026-09-30 | 2026-10-04 |  |  |  |  |  |  |  |  |  |  |  |  |  |  |  |  |  |
| DAM3-C-B4-M-920 |  | Installation of Fire Fighting Pipes (Seamless Black Steel) | 7d | 2026-09-30 A | 2026-10-04 A | DAM3-C-B4-A-1090 | 100% | 2026-12-07 | 2026-12-15 |  |  | Pipe Fitter [112 h]; Construction Cost [72394.8] | 72,394.75 | 72,394.75 | 05 | 04 | 03 | 0 | 0 | H1.C.A1.0A.MF.G.1010 | 0 | 1 |
| DAM3-C-B4-M-930 |  | Installation of Fire Fighting Valve | 5d | 2026-09-30 A | 2026-10-04 A | DAM3-C-B4-M-920 | 100% | 2026-12-15 | 2026-12-21 |  |  | Pipe Fitter [80 h]; Construction Cost [12199.4] | 12,199.4 | 12,199.4 | 05 | 04 | 03 | 0 | 0 | H1.C.A1.0A.MF.G.2010 | 0 | 1 |

| ID | WBS | Activity | Duration | Start | Finish | Predecessors | Complete | Remaining | Planned start | Planned finish | Total float | Free float | Resources | Cost | Actual cost | Ordinal Start | Ordinal Finish | 00 Activity ID | Ordinal Duration | Zone # | Phasing Code Category | Discipline | Project component code |
| --- | --- | --- | --- | --- | --- | --- | --- | --- | --- | --- | --- | --- | --- | --- | --- | --- | --- | --- | --- | --- | --- | --- | --- |
|  | 2 | **SECOND STAGE** |  | 2026-11-19 | 2026-12-08 |  |  |  |  |  |  |  |  |  |  |  |  |  |  |  |  |  |  |
| DAM3-C-B4-M-940 |  | Installation of Fire Hose Cabinet | 3d | 2026-11-19 | 2026-11-22 | DAM3-C-B4-M-930 |  |  |  |  | 64.8d | 14d | Pipe Fitter [48 h]; Construction Cost [15158.6] | 15,158.56 |  | 0 | 0 | H1.C.A1.0A.MF.G.3010 | 0 | 1 | 05 | 04 | 03 |
| DAM3-C-B4-M-990 |  | Supply, install, test and commission Fire Department Connection(FDC) | 3d | 2026-12-06 | 2026-12-08 | DAM3-C-B4-M-960 |  |  |  |  | 51.2d | 7d | Pipe Fitter [48 h]; Construction Cost [2706.06] | 2,706.06 |  | 0 | 0 | H1.C.A1.0A.MF.G.3010 | 0 | 1 | 05 | 04 | 03 |
|  | 3 | **SEWER AND DRAINAGE SYSTEM** |  | 2026-06-25 | 2026-11-29 |  |  |  |  |  |  |  |  |  |  |  |  |  |  |  |  |  |  |
|  | 1 | **FIRST STAGE** |  | 2026-06-25 | 2026-11-12 |  |  |  |  |  |  |  |  |  |  |  |  |  |  |  |  |  |  |
| DAM3-C-B4-M-1000 |  | Installation of Trench drain | 5d | 2026-06-25 A | 2026-06-28 A | DAM3-C-B4-M-840 | 100% |  | 2026-10-15 | 2026-10-21 |  |  | Plumber [80 h]; Construction Cost [11508.8] | 11,508.8 | 11,508.8 |  |  |  |  |  | 05 | 04 | 03 |
| DAM3-C-B4-M-820 |  | Installation of Sanitary Waste / Drainage Pipes | 4d | 2026-06-27 A | 2026-06-29 A | DAM3-C-B4-S-977 | 100% |  | 2026-06-29 | 2026-07-02 |  |  | Plumber [64 h]; Construction Cost [18585.1] | 18,585.14 | 18,585.14 | 0 | 0 | H1.C.K1.00.MP.G.1020 | 0 | 1 | 05 | 04 | 03 |
| DAM3-C-B4-M-840 |  | Installation of Floor Drain | 2d | 2026-11-11 | 2026-11-12 | DAM3-C-B4-M-820, DAM3-C-B4-A-1080 |  |  |  |  | 9.5d | 0d | Plumber [32 h]; Construction Cost [11056] | 11,055.96 |  |  |  |  |  | 1 | 05 | 04 | 03 |
|  | 2 | **SECOND STAGE** |  | 2026-11-14 | 2026-11-29 |  |  |  |  |  |  |  |  |  |  |  |  |  |  |  |  |  |  |
| DAM3-C-B4-M-800 |  | Installation of Electric Water Heater | 2d | 2026-11-14 | 2026-11-15 | DAM3-C-B4-M-1000 |  |  |  |  | 9.5d | 0d | Plumber [32 h]; Construction Cost [1819.51] | 1,819.51 |  | 0 | 0 | H1.C.K1.00.MP.G.1030 | 0 | 1 | 05 | 04 | 03 |
| DAM3-C-B4-M-810 |  | Installation of Sanitary Fixture and Accessories | 4d | 2026-11-16 | 2026-11-19 | DAM3-C-B4-M-800 |  |  |  |  | 9.5d | 0d | Plumber [64 h]; Construction Cost [19921.7] | 19,921.72 |  | 0 | 0 | H1.C.K1.00.MP.G.2040 | 0 | 1 | 05 | 04 | 03 |
| DAM3-C-B4-M-830 |  | Installation of Lavotary /Wash Basin | 2d | 2026-11-21 | 2026-11-22 | DAM3-C-B4-M-800, DAM3-C-B4-M-810 |  |  |  |  | 49.2d | 0d | Plumber [32 h]; Construction Cost [21416.7] | 21,416.68 |  |  |  |  |  | 1 | 05 | 04 | 03 |
| DAM3-C-B4-M-890 |  | Installation of Bib Tap | 2d | 2026-11-23 | 2026-11-24 | DAM3-C-B4-M-810, DAM3-C-B4-M-830 |  |  |  |  | 49.2d | 0d | Plumber [32 h]; Construction Cost [1900.66] | 1,900.66 |  |  |  |  |  |  | 05 | 04 | 03 |
| DAM3-C-B4-M-850 |  | Installation of Water Tap | 2d | 2026-11-25 | 2026-11-26 | DAM3-C-B4-M-830, DAM3-C-B4-M-890 |  |  |  |  | 49.2d | 0d | Plumber [32 h]; Construction Cost [2874.14] | 2,874.14 |  |  |  |  |  |  | 05 | 04 | 03 |
| DAM3-C-B4-M-860 |  | Installation of Roof Vent Cap | 2d | 2026-11-28 | 2026-11-29 | DAM3-C-B4-M-850 |  |  |  |  | 49.2d | 0d | Pipe Fitter [32 h]; Construction Cost [927.12] | 927.12 |  |  |  |  |  |  | 05 | 04 | 03 |
|  | 4 | **WATER SUPPLY SYSTEM** |  | 2026-09-22 | 2026-11-24 |  |  |  |  |  |  |  |  |  |  |  |  |  |  |  |  |  |  |
|  | 1 | **FIRST STAGE** |  | 2026-09-22 | 2026-09-29 |  |  |  |  |  |  |  |  |  |  |  |  |  |  |  |  |  |  |
| DAM3-C-B4-M-910 |  | Installation of Water Supply Pipes | 4d | 2026-09-22 A | 2026-09-29 A | DAM3-C-B4-A-1090 | 100% |  | 2026-12-06 | 2026-12-09 |  |  | Plumber [64 h]; Construction Cost [23318.4] | 23,318.41 | 23,318.41 | 0 | 0 | H1.C.K1.00.MP.G.1010 | 0 | 1 | 05 | 04 | 03 |
| DAM3-C-B4-M-900 |  | Installation of Water Supply Valve | 2d | 2026-09-24 A | 2026-09-29 A | DAM3-C-B4-M-910 | 100% |  | 2026-12-12 | 2026-12-13 |  |  | Plumber [32 h]; Construction Cost [18274.3] | 18,274.27 | 18,274.27 | 0 | 0 | H1.C.K1.00.MP.G.2010 | 0 | 1 | 05 | 04 | 03 |
|  | 2 | **SECOND STAGE** |  | 2026-11-19 | 2026-11-24 |  |  |  |  |  |  |  |  |  |  |  |  |  |  |  |  |  |  |
| DAM3-C-B4-M-950 |  | Capped connection | 5d | 2026-11-19 | 2026-11-24 | DAM3-C-B4-M-900 |  |  |  |  | 57.2d | 8d | Plumber [80 h]; Construction Cost [278.13] | 278.13 |  |  |  |  |  |  | 05 | 04 | 03 |
|  | 4 | **ELECTRICAL** |  | 2026-05-24 | 2027-01-03 |  |  |  |  |  |  |  |  |  |  |  |  |  |  |  |  |  |  |
|  | 1 | **FIRST STAGE** |  | 2026-05-24 | 2027-01-02 |  |  |  |  |  |  |  |  |  |  |  |  |  |  |  |  |  |  |
| DAM3-C-B4-E-573 |  | Installation of Earthing and Grounding | 4d | 2026-05-24 A | 2026-12-29 | DAM3-C-B4-E-683 SS | 90% | 0.4d | 2026-12-22 | 2026-12-26 | 48.8d | 36d | Electrician [64 h]; Construction Cost [19646.5] | 19,646.47 | 17,681.82 |  |  | H1.C.K1.00.EM.G.2040 |  | 1 | 05 | 05 | 03 |
| DAM3-C-B4-E-603 |  | Installation of Conduits and wiring outlets - Fire Alarm System | 4d | 2026-05-24 A | 2026-11-28 | DAM3-C-B4-E-663 | 50% | 2d | 2026-11-22 | 2026-11-25 | 50.2d | 1d | Electrician [64 h]; Construction Cost [1768.31] | 1,768.31 | 884.15 |  |  | H1.C.K1.00.EL.G.1020 |  | 1 | 05 | 05 | 03 |
| DAM3-C-B4-E-643 |  | Installation of Sleeves & Power outlet | 8d | 2026-05-24 A | 2026-11-02 | DAM3-C-B4-A-1030 | 50% | 4d | 2026-09-08 | 2026-09-17 | 12.5d | 3d | Electrician [128 h]; Construction Cost [2920.45] | 2,920.45 | 1,460.23 |  |  |  |  | 1 | 05 | 05 | 03 |
| DAM3-C-B4-E-623 |  | Installation of Conduites for Lighting Fixture | 4d | 2026-09-12 A | 2026-12-09 | DAM3-C-B4-E-593, DAM3-C-B4-M-940 | 90% | 0.4d | 2026-12-23 | 2026-12-27 | 50.8d | 6.6d | Electrician [64 h]; Construction Cost [8462.97] | 8,462.97 | 7,616.67 |  |  | H1.C.K1.00.EM.G.2030 |  | 1 | 05 | 05 | 03 |
| DAM3-C-B4-E-693 |  | Installation of Wires | 4d | 2026-12-17 | 2026-12-21 | DAM3-C-B4-E-623, DAM3-C-B4-M-990, DAM3-C-B4-A-1200 |  |  |  |  | 44.2d | 0d | Electrician [64 h]; Construction Cost [16925.9] | 16,925.94 |  |  |  |  |  |  | 05 | 05 | 03 |
| DAM3-C-B4-E-683 |  | Installation of LV Cables | 4d | 2026-12-29 | 2027-01-02 | DAM3-C-B4-E-673 SS |  |  |  |  | 45.2d | 0d | Electrician [64 h]; Construction Cost [36390] | 36,389.98 |  |  |  |  |  |  | 05 | 05 | 03 |

| ID | WBS | Activity | Duration | Start | Finish | Predecessors | Complete | Planned start | Planned finish | Total float | Free float | Resources | Cost | Actual cost | Phasing Code Category | Discipline | Project component code | 00 Activity ID | Zone # | AMH Tender Act. ID | Tender Original Duration |
| --- | --- | --- | --- | --- | --- | --- | --- | --- | --- | --- | --- | --- | --- | --- | --- | --- | --- | --- | --- | --- | --- |
|  | 2 | **SECOND STAGE** |  | 2026-11-07 | 2027-01-03 |  |  |  |  |  |  |  |  |  |  |  |  |  |  |  |  |
| DAM3-C-B4-E-1040 |  | Installation of Solar power plant | 7d | 2026-11-07 | 2026-11-14 | DAM3-C-B5-E-1350 |  |  |  | 39.5d | 0d | Plumber [112 h]; Construction Cost [253269] | 253,268.71 |  | 05 | 05 | 03 |  |  |  |  |
| DAM3-C-B4-E-633 |  | Installation of Wiring Devices | 4d | 2026-11-19 | 2026-11-23 | DAM3-C-B4-E-643, DAM3-C-B4-A-1090, DAM3-C-B5-M-1260 |  |  |  | 50.2d | 0d | Electrician [64 h]; Construction Cost [19435.1] | 19,435.09 |  | 05 | 05 | 03 | H1.C.K1.00.EM.G.3020 | 1 |  |  |
| DAM3-C-B4-E-663 |  | Installation of Disconnect Switches | 2d | 2026-11-24 | 2026-11-25 | DAM3-C-B4-E-633 |  |  |  | 50.2d | 0d | Electrician [32 h]; Construction Cost [30236] | 30,235.95 |  | 05 | 05 | 03 |  |  |  |  |
| DAM3-C-B4-E-583 |  | Installation of Fire Alarm Control Panel | 4d | 2026-11-30 | 2026-12-03 | DAM3-C-B4-E-603, DAM3-C-B4-M-860 |  |  |  | 49.2d | 0d | Electrician [64 h]; Construction Cost [19451.4] | 19,451.37 |  | 05 | 05 | 03 | H1.C.K1.00.EL.X.4120 | 1 |  |  |
| DAM3-C-B4-E-593 |  | Installation of Fire Detectors & Accessories | 4d | 2026-12-05 | 2026-12-08 | DAM3-C-B4-E-583, DAM3-C-B4-M-950 |  |  |  | 49.2d | 0d | Electrician [64 h]; Construction Cost [56740.4] | 56,740.37 |  | 05 | 05 | 03 | H1.C.K1.00.EL.G.3020 | 1 |  |  |
| DAM3-C-B4-E-733 |  | Installation of Access Control System | 5d | 2026-12-09 | 2026-12-14 | DAM3-C-B4-E-593 |  |  |  | 49.2d | 0d | Electrician [80 h]; Construction Cost [27616.9] | 27,616.86 |  | 05 | 05 | 03 | H1.C.K1.00.EM.G.2040 | 1 |  |  |
| DAM3-C-B4-E-743 |  | Monitor Modules for Fire Alarm | 2d | 2026-12-15 | 2026-12-16 | DAM3-C-B4-E-733 |  |  |  | 49.2d | 0d | Electrician [32 h]; Construction Cost [3882.38] | 3,882.38 |  | 05 | 05 | 03 | H1.C.K1.00.EM.G.2040 | 1 |  |  |
| DAM3-C-B4-E-753 |  | Line Isolator Modules for Fire Alarm | 2d | 2026-12-17 | 2026-12-19 | DAM3-C-B4-E-743 |  |  |  | 49.2d | 0d | Electrician [32 h]; Construction Cost [185.4] | 185.4 |  | 05 | 05 | 03 | H1.C.K1.00.EM.G.2040 | 1 |  |  |
| DAM3-C-B4-E-763 |  | Firewarning flash light with sounder; wall mounted, Weather proof | 2d | 2026-12-20 | 2026-12-21 | DAM3-C-B4-E-753 |  |  |  | 49.2d | 42d | Electrician [32 h]; Construction Cost [3082.69] | 3,082.69 |  | 05 | 05 | 03 | H1.C.K1.00.EM.G.2040 | 1 |  |  |
| DAM3-C-B4-E-613 |  | Installation of Lighting fixtures | 4d | 2026-12-22 | 2026-12-26 | DAM3-C-B4-E-693 |  |  |  | 45.2d | 38d | Electrician [64 h]; Construction Cost [76166.7] | 76,166.74 |  | 05 | 05 | 03 | H1.C.K1.00.EM.G.3010 | 1 |  |  |
| DAM3-C-B4-E-653 |  | Installation of Main Distribution Board | 2d | 2026-12-22 | 2026-12-23 | DAM3-C-B4-E-693 |  |  |  | 44.2d | 0d | Electrician [32 h]; Construction Cost [32472.7] | 32,472.73 |  | 05 | 05 | 03 | H1.C.K1.00.EM.G.2020 | 1 |  |  |
| DAM3-C-B4-E-703 |  | Installation of LP-1 Panel | 2d | 2026-12-24 | 2026-12-26 | DAM3-C-B4-E-653 |  |  |  | 44.2d | 0d | Electrician [32 h]; Construction Cost [18403.5] | 18,403.54 |  | 05 | 05 | 03 | H1.C.K1.00.EM.G.2020 | 1 |  |  |
| DAM3-C-B4-E-1030 |  | Installation of CCTV System | 7d | 2026-12-27 | 2027-01-03 | DAM3-C-B4-E-643, DAM3-C-B4-E-713 SS |  |  |  | 44.2d | 36d | Plumber [112 h]; Construction Cost [76349.2] | 76,349.24 |  | 05 | 05 | 03 |  |  |  |  |
| DAM3-C-B4-E-713 |  | Installation of PP-AC panel | 2d | 2026-12-27 | 2026-12-28 | DAM3-C-B4-E-703 |  |  |  | 44.2d | 0d | Electrician [32 h]; Construction Cost [21648.5] | 21,648.48 |  | 05 | 05 | 03 | H1.C.K1.00.EM.G.2020 | 1 |  |  |
| DAM3-C-B4-E-673 |  | Installation of Telephone Cabinet | 2d | 2026-12-29 | 2026-12-30 | DAM3-C-B4-E-713 |  |  |  | 45.2d | 0d | Electrician [32 h]; Construction Cost [26991.1] | 26,991.08 |  | 05 | 05 | 03 |  | 1 |  |  |
|  | 6 | **BLOCK B3** |  | 2026-02-17 | 2027-02-15 |  |  |  |  |  |  |  |  |  |  |  |  |  |  |  |  |
|  | 1 | **STRUCTURAL** |  | 2026-02-17 | 2026-10-25 |  |  |  |  |  |  |  |  |  |  |  |  |  |  |  |  |
|  | 1 | **FOOTING** |  | 2026-02-17 | 2026-05-17 |  |  |  |  |  |  |  |  |  |  |  |  |  |  |  |  |
| DAM3-C-B3-S-210 |  | Excavation for footings | 4d | 2026-02-17 A | 2026-03-12 A | DAM3-C-B4-S-210 | 100% | 2026-03-26 | 2026-03-31 |  |  | General Labour [112 h]; Equipment Operator [112 h]; Truck [32 h]; Excavator [32 h]; Mini Roller Compactor [32 h]; Construction Cost [89859.6] | 89,859.61 | 89,859.61 | 05 | 01 | 04 | H1.C.K1.00.SW.F.1010 | 1 | PH1-MHR-ST-640 | 12 |
| DAM3-C-B3-S-6203 |  | Soil replacement - rock fill | 4d | 2026-03-17 A | 2026-03-24 A | DAM3-C-B3-S-210 | 100% | 2026-04-02 | 2026-04-07 |  |  | General Labour [256 h]; Truck [64 h]; Mini Roller Compactor [64 h]; Equipment Operator [256 h]; Wheel Loader [64 h]; Construction Cost [179062] | 179,061.91 | 179,061.91 | 05 | 01 | 04 | H1.C.K1.00.SW.F.1060 | 1 | PH1-MHR-ST-645 | 15 |
| DAM3-C-B3-S-6213 |  | Engineering fill | 4d | 2026-03-28 A | 2026-04-07 A | DAM3-C-B3-S-6203, DAM3-C-B3-S-6203 FF, DAM3-C-B3-S-6203 SS | 100% | 2026-04-04 | 2026-04-07 |  |  | General Labour [256 h]; Truck [64 h]; Mini Roller Compactor [64 h]; Equipment Operator [256 h]; Wheel Loader [64 h]; Construction Cost [46046.2] | 46,046.19 | 46,046.19 | 05 | 01 | 04 | H1.C.K1.00.SW.F.1060 | 1 | PH1-MHR-ST-645 | 15 |
| DAM3-C-B3-S-1037 |  | Anti Termite Below Footings | 1d | 2026-04-11 A | 2026-04-11 A | DAM3-C-B3-S-6213 | 100% | 2026-04-15 | 2026-04-15 |  |  | Mason [16 h]; Construction Cost [11905.5] | 11,905.55 | 11,905.55 | 05 | 01 | 04 | H1.C.K1.00.SW.F.1030 | 1 | PH1-MHR-ST-1020 | 10 |
| DAM3-C-B3-S-797 |  | Lean Concrete Below Footings | 2d | 2026-04-11 A | 2026-04-11 A | DAM3-C-B3-S-947, DAM3-C-B9-S-103 | 100% | 2026-04-18 | 2026-04-19 |  |  | Mason [32 h]; Construction Cost [8229.34] | 8,229.34 | 8,229.34 | 05 | 01 | 04 | H1.C.K1.00.SW.F.1030 | 1 | PH1-MHR-ST-1020 | 10 |
| DAM3-C-B3-S-947 |  | Vapour Barrier for Footings | 1d | 2026-04-11 A | 2026-04-11 A | DAM3-C-B3-S-1037 | 100% | 2026-04-16 | 2026-04-16 |  |  | General Labour [16 h]; Construction Cost [7940.1] | 7,940.1 | 7,940.1 | 05 | 01 | 04 | H1.C.K1.00.SW.F.1040 | 1 | PH1-MHR-ST-1080 | 15 |
| DAM3-C-B3-S-847 |  | Rebar for Footings | 4d | 2026-05-06 A | 2026-05-11 A | DAM3-C-B3-S-797 | 100% | 2026-05-09 | 2026-05-12 |  |  | Steel Fixer [64 h]; Construction Cost [101845] | 101,844.98 | 101,844.98 | 05 | 01 | 04 |  | 1 |  |  |
| DAM3-C-B3-S-857 |  | Formwork for Footings | 4d | 2026-05-11 A | 2026-05-13 A | DAM3-C-B3-S-847 | 100% | 2026-05-14 | 2026-05-19 |  |  | Carperter [64 h]; Construction Cost [25461.2] | 25,461.25 | 25,461.25 | 05 | 01 | 04 |  | 1 |  |  |
| DAM3-C-B3-S-807 |  | Pouring Concrete for Footings | 1d | 2026-05-17 A | 2026-05-17 A | DAM3-C-B3-S-857 | 100% | 2026-05-19 | 2026-05-19 |  |  | Carperter [16 h]; Mason [16 h]; Steel Fixer [16 h]; Concrete Mixer [8 h]; Equipment Operator [16 h]; Construction Cost [127306] | 127,306.23 | 127,306.23 | 05 | 01 | 04 | H1.C.K1.00.RC.F.1010 | 1 | PH1-MHR-ST-1030 | 21 |

| ID | WBS | Activity | Duration | Start | Finish | Predecessors | Complete | Planned start | Planned finish | Total float | Free float | Resources | Cost | Actual cost | Zone # | Phasing Code Category | Discipline | Project component code | 00 Activity ID | AMH Tender Act. ID | Tender Original Duration | project summary-4 | PS (su & rbf)-4 | New code for weekly report-4 | New discipline code-4 |
| --- | --- | --- | --- | --- | --- | --- | --- | --- | --- | --- | --- | --- | --- | --- | --- | --- | --- | --- | --- | --- | --- | --- | --- | --- | --- |
|  | 2 | **COLUMN NECK** |  | 2026-05-11 | 2026-06-09 |  |  |  |  |  |  |  |  |  |  |  |  |  |  |  |  |  |  |  |  |
| DAM3-C-B3-S-897 |  | Rebar for column neck | 2d | 2026-05-11 A | 2026-05-14 A | DAM3-C-B3-S-807 | 100% | 2026-05-20 | 2026-05-23 |  |  | Steel Fixer [32 h]; Construction Cost [14919.2] | 14,919.19 | 14,919.19 | 1 | 05 | 01 | 04 |  |  |  |  |  |  |  |
| DAM3-C-B3-S-887 |  | Pouring Concrete for column neck | 1d | 2026-05-20 A | 2026-05-20 A | DAM3-C-B3-S-907 | 100% | 2026-05-23 | 2026-05-23 |  |  | Mason [16 h]; Carperter [16 h]; Concrete Mixer [8 h]; Steel Fixer [16 h]; Equipment Operator [16 h]; Construction Cost [24865.3] | 24,865.31 | 24,865.31 | 1 | 05 | 01 | 04 | H1.C.K1.00.RC.F.1110 | PH1-MHR-ST-1030 | 21 |  |  |  |  |
| DAM3-C-B3-S-937 |  | Damp proof /Bitumin paint on Footings & column neck | 2d | 2026-05-20 A | 2026-05-23 A | DAM3-C-B3-S-887 | 100% | 2026-05-24 | 2026-05-25 |  |  | Painter [32 h]; Construction Cost [24777.7] | 24,777.73 | 24,777.73 | 1 | 05 | 01 | 04 | H1.C.K1.00.SW.F.1050 | PH1-MHR-ST-1080 | 15 |  |  |  |  |
| DAM3-C-B3-S-907 |  | Formwork for column neck | 2d | 2026-05-21 A | 2026-05-23 A | DAM3-C-B3-S-897 | 100% |  |  |  |  | Carperter [32 h]; Construction Cost [9946.13] | 9,946.13 | 9,946.13 | 1 | 05 | 01 | 04 |  |  |  |  |  |  |  |
| DAM3-C-B3-S-997 |  | Backfilling / Compaction up to Bottom of Grade Beams | 7d | 2026-05-24 A | 2026-06-09 A | DAM3-C-B3-S-937 | 100% | 2026-05-30 | 2026-06-06 |  |  | General Labour [256 h]; Truck [128 h]; Mini Roller Compactor [128 h]; Equipment Operator [256 h]; Wheel Loader [128 h]; Construction Cost [46046.2] | 46,046.19 | 46,046.19 | 1 | 05 | 01 | 04 | H1.C.K1.00.SW.F.1060 | PH1-MHR-ST-645 | 15 |  |  |  |  |
|  | 3 | **GRADE BEAM** |  | 2026-06-14 | 2026-06-30 |  |  |  |  |  |  |  |  |  |  |  |  |  |  |  |  |  |  |  |  |
| DAM3-C-B3-S-1047 |  | Anti Termite Below Grade Beams | 1d | 2026-06-14 A | 2026-06-14 A | DAM3-C-B3-S-997 | 100% | 2026-06-16 | 2026-06-16 |  |  | Mason [16 h]; Construction Cost [11905.5] | 11,905.55 | 11,905.55 | 1 | 05 | 01 | 04 | H1.C.K1.00.SW.F.1030 | PH1-MHR-ST-1020 | 10 |  |  |  |  |
| DAM3-C-B3-S-817 |  | Lean Concrete Below Grade Beams | 2d | 2026-06-14 A | 2026-06-14 A | DAM3-C-B3-S-967 | 100% | 2026-06-20 | 2026-06-21 |  |  | Mason [32 h]; Construction Cost [4431.19] | 4,431.19 | 4,431.19 | 1 | 05 | 01 | 04 | H1.C.K1.00.SW.F.1130 | PH1-MHR-ST-1020 | 10 |  |  |  |  |
| DAM3-C-B3-S-967 |  | Vapour barrier for Grade Beams | 2d | 2026-06-14 A | 2026-06-14 A | DAM3-C-B3-S-1047 | 100% | 2026-06-17 | 2026-06-18 |  |  | General Labour [32 h]; Construction Cost [5293.4] | 5,293.4 | 5,293.4 | 1 | 05 | 01 | 04 | H1.C.K1.00.SW.F.1040 | PH1-MHR-ST-1080 | 15 |  |  |  |  |
| DAM3-C-B3-S-867 |  | Rebar for Grade Beams | 5d | 2026-06-16 A | 2026-06-20 A | DAM3-C-B3-S-817 | 100% | 2026-06-21 | 2026-06-25 |  |  | Steel Fixer [80 h]; Construction Cost [27194.5] | 27,194.46 | 27,194.46 | 1 | 05 | 01 | 04 |  |  |  |  |  |  |  |
| DAM3-C-B3-S-1027 |  | Anchor bolts installation | 2d | 2026-06-18 A | 2026-06-20 A | DAM3-C-B3-S-877 SS | 100% | 2026-06-23 | 2026-06-24 |  |  | Carperter [32 h]; Construction Cost [57238.8] | 57,238.83 | 57,238.83 | 1 | 05 | 01 | 04 |  |  |  |  |  |  |  |
| DAM3-C-B3-S-877 |  | Formwork for Grade Beams | 2d | 2026-06-18 A | 2026-06-22 A | DAM3-C-B3-S-867 | 100% | 2026-06-27 | 2026-06-28 |  |  | Carperter [32 h]; Construction Cost [6798.61] | 6,798.61 | 6,798.61 | 1 | 05 | 01 | 04 |  |  |  |  |  |  |  |
| DAM3-C-B3-S-827 |  | Pouring Concrete for Grade Beams | 1d | 2026-06-24 A | 2026-06-24 A | DAM3-C-B3-S-877, DAM3-C-B3-S-1027 | 100% |  |  |  |  | Mason [16 h]; Carperter [16 h]; Concrete Mixer [8 h]; Steel Fixer [16 h]; Equipment Operator [16 h]; Construction Cost [33993.1] | 33,993.09 | 33,993.09 | 1 | 05 | 01 | 04 | H1.C.K1.00.RC.F.1110 | PH1-MHR-ST-1030 | 21 |  |  |  |  |
| DAM3-C-B3-S-977 |  | Damp proof /Bitumin paint on Grade Beams | 5d | 2026-06-27 A | 2026-06-30 A | DAM3-C-B3-S-827 | 100% | 2026-06-28 | 2026-07-02 |  |  | Painter [80 h]; Construction Cost [24777.7] | 24,777.73 | 24,777.73 | 1 | 05 | 01 | 04 | H1.C.K1.00.SW.F.1050 | PH1-MHR-ST-1080 | 15 |  |  |  |  |
|  | 5 | **SLAB ON GRADE** |  | 2026-07-06 | 2026-10-25 |  |  |  |  |  |  |  |  |  |  |  |  |  |  |  |  |  |  |  |  |
| DAM3-C-B3-S-1007 |  | Backfilling / Compaction for Slab on Grade | 7d | 2026-07-06 A | 2026-07-09 A | DAM3-C-B3-S-977 | 100% | 2026-07-06 | 2026-07-13 |  |  | Mini Roller Compactor [128 h]; General Labour [256 h]; Equipment Operator [256 h]; Wheel Loader [128 h]; Truck [128 h]; Construction Cost [23023.1] | 23,023.09 | 23,023.09 | 1 | 05 | 01 | 04 |  |  |  |  |  |  |  |
| DAM3-C-B3-S-837 |  | Pouring Concrete for Ground Slab | 4d | 2026-08-11 A | 2026-08-15 A | DAM3-C-B3-S-987 | 100% | 2026-08-15 | 2026-08-18 |  |  | Mason [64 h]; Carperter [64 h]; Steel Fixer [64 h]; Concrete Mixer [32 h]; Equipment Operator [64 h]; Construction Cost [344195] | 344,195.21 | 344,195.21 | 1 | 05 | 01 | 04 | H1.C.A1.06.RC.G.1210 | PH1-MHR-ST-496 | 24 |  |  |  |  |
| DAM3-C-B3-S-957 |  | Anti Termite Treatment below Ground Slab | 1d | 2026-08-11 A | 2026-08-15 A | DAM3-C-B3-S-1007 | 100% | 2026-08-11 | 2026-08-11 |  |  | General Labour [16 h]; Construction Cost [15874.1] | 15,874.08 | 15,874.08 | 1 | 05 | 01 | 04 | H1.C.A1.06.SW.F.1220 | PH1-MHR-ST-645 | 15 |  |  |  |  |
| DAM3-C-B3-S-987 |  | Vapour barrier for below Ground Slab | 2d | 2026-08-11 A | 2026-08-15 A | DAM3-C-B3-S-957 | 100% | 2026-08-12 | 2026-08-13 |  |  | General Labour [32 h]; Construction Cost [13233.5] | 13,233.49 | 13,233.49 | 1 | 05 | 01 | 04 |  |  |  |  |  |  |  |
| DAM3-C-B3-S-1017 |  | Concrete pad | 7d | 2026-10-17 | 2026-10-25 | DAM3-C-B3-A-260 |  |  |  | 37.1d | 16.5d | Mason [112 h]; Construction Cost [907.11] | 907.11 |  |  | 05 | 01 | 04 |  |  |  |  |  |  |  |
|  | 4 | **COLUMNS & BEAMS** |  | 2026-06-16 | 2026-10-05 |  |  |  |  |  |  |  |  |  |  |  |  |  |  |  |  |  |  |  |  |
| DAM3-C-B3-S-6101 |  | Rebar for Tie Beams | 4d | 2026-06-16 A | 2026-06-20 A | DAM3-C-B3-S-5103 | 100% | 2026-07-22 | 2026-07-27 |  |  | Steel Fixer [64 h]; Construction Cost [7263.64] | 7,263.64 | 7,263.64 | 1 | 05 | 01 | 04 |  |  |  | 3 | 1 | 4 | 1 |
| DAM3-C-B3-S-6102 |  | Formwork for Tie Beams | 2d | 2026-06-18 A | 2026-06-22 A | DAM3-C-B3-S-6101 | 100% | 2026-07-27 | 2026-07-29 |  |  | Carperter [32 h]; Construction Cost [1815.91] | 1,815.91 | 1,815.91 | 1 | 05 | 01 | 04 |  |  |  | 3 | 1 | 4 | 1 |
| DAM3-C-B3-S-6103 |  | Pouring Concrete for Tie Beams | 1d | 2026-06-24 A | 2026-06-24 A | DAM3-C-B3-S-6102 | 100% | 2026-07-29 | 2026-07-30 |  |  | Mason [16 h]; Carperter [16 h]; Concrete Mixer [32 h]; Steel Fixer [16 h]; Equipment Operator [16 h]; Construction Cost [9079.54] | 9,079.54 | 9,079.54 | 1 | 05 | 01 | 04 | H1.C.K1.00.RC.F.1110 | PH1-MHR-ST-1030 | 21 | 3 | 1 | 4 | 1 |
| DAM3-C-B3-S-5101 |  | Rebar for column | 5d | 2026-07-22 A | 2026-07-25 A | DAM3-C-B3-S-1007 | 100% | 2026-07-25 | 2026-07-29 |  |  | Steel Fixer [112 h]; Construction Cost [20144] | 20,144.05 | 20,144.05 | 1 | 05 | 01 | 04 |  |  |  | 3 | 1 | 4 | 1 |
| DAM3-C-B3-S-5102 |  | Formwork for column | 4d | 2026-07-27 A | 2026-08-02 A | DAM3-C-B3-S-5101 | 100% | 2026-07-28 | 2026-08-01 |  |  | Carperter [64 h]; Construction Cost [5036.01] | 5,036.01 | 5,036.01 | 1 | 05 | 01 | 04 |  |  |  | 3 | 1 | 4 | 1 |
| DAM3-C-B3-S-5103 |  | Pouring Concrete for column | 1d | 2026-07-29 A | 2026-08-03 A | DAM3-C-B3-S-5102 | 100% | 2026-08-01 | 2026-08-01 |  |  | Mason [16 h]; Carperter [16 h]; Concrete Mixer [32 h]; Steel Fixer [16 h]; Equipment Operator [16 h]; Construction Cost [25180.1] | 25,180.06 | 25,180.06 | 1 | 05 | 01 | 04 | H1.C.K1.00.RC.F.1110 | PH1-MHR-ST-1030 | 21 | 3 | 1 | 4 | 1 |
| DAM3-C-B3-S-6113 |  | Rebar for Beams | 4d | 2026-09-08 A | 2026-09-15 A | DAM3-C-B3-S-6103 | 100% | 2026-09-09 | 2026-09-13 |  |  | Steel Fixer [64 h]; Construction Cost [13379.1] | 13,379.11 | 13,379.11 | 1 | 05 | 01 | 04 |  |  |  | 3 | 1 | 4 | 1 |
| DAM3-C-B3-S-6123 |  | Formwork for Beams | 2d | 2026-09-23 A | 2026-09-29 A | DAM3-C-B3-S-6113, DAM3-C-B3-S-6113 FF, DAM3-C-B4-S-6133 | 100% | 2026-09-28 | 2026-09-29 |  |  | Carperter [32 h]; Construction Cost [3344.77] | 3,344.77 | 3,344.77 | 1 | 05 | 01 | 04 |  |  |  | 3 | 1 | 4 | 1 |
| DAM3-C-B3-S-6133 |  | Pouring Concrete for Beams | 1d | 2026-09-26 A | 2026-10-05 A | DAM3-C-B3-S-6123, DAM3-C-B3-S-6123 FF | 100% | 2026-09-30 | 2026-09-30 |  |  | Mason [16 h]; Carperter [16 h]; Concrete Mixer [32 h]; Steel Fixer [16 h]; Equipment Operator [16 h]; Construction Cost [16723.9] | 16,723.88 | 16,723.88 | 1 | 05 | 01 | 04 | H1.C.K1.00.RC.F.1110 | PH1-MHR-ST-1030 | 21 | 3 | 1 | 4 | 1 |

| ID | WBS | Activity | Duration | Start | Finish | Predecessors | Complete | Remaining | Planned start | Planned finish | Total float | Free float | Resources | Cost | Actual cost | Phasing Code Category | Discipline | Project component code | 00 Activity ID | Zone # |
| --- | --- | --- | --- | --- | --- | --- | --- | --- | --- | --- | --- | --- | --- | --- | --- | --- | --- | --- | --- | --- |
|  | 5 | **STRUCTURAL STEEL** |  | 2026-07-15 | 2026-10-31 |  |  |  |  |  |  |  |  |  |  |  |  |  |  |  |
| DAM3-C-B3-A-210 |  | Installation of columns | 3d | 2026-07-15 A | 2026-07-15 A | DAM3-C-B3-S-837, DAM3-C-B4-A-220, DAM3-P-DL-A-1770 | 100% |  | 2026-07-25 | 2026-07-27 |  |  | Structural Steel Fixer [80 h]; General Labour [80 h]; Equipment Operator [80 h]; Mobile Crane [24 h]; Construction Cost [217508] | 217,507.55 | 217,507.55 | 05 | 02 | 04 |  |  |
| DAM3-C-B3-A-220 |  | Installation of raft and purlins | 5d | 2026-07-15 A | 2026-07-16 A | DAM3-C-B3-A-210 | 100% |  | 2026-07-28 | 2026-08-02 |  |  | Structural Steel Fixer [160 h]; General Labour [160 h]; Mobile Crane [56 h]; Equipment Operator [160 h]; Construction Cost [326261] | 326,261.32 | 326,261.32 | 05 | 02 | 04 |  |  |
| DAM3-C-B3-A-1430 |  | Intumescent paint to steel works | 7d | 2026-07-25 A | 2026-07-29 A | DAM3-C-B3-A-220 | 100% |  | 2026-08-04 | 2026-08-11 |  |  | Painter [112 h]; Construction Cost [317760] | 317,759.56 | 317,759.56 | 05 | 02 | 04 | H1.C.A1.SA.FI.G.0730 | 1 |
| DAM3-C-B3-A-250 |  | Installation of roof sheet | 5d | 2026-08-16 A | 2026-08-23 A | DAM3-C-B3-A-230, DAM3-C-B3-A-1430, DAM3-C-B3-S-6133 | 100% |  | 2026-08-29 | 2026-09-02 |  |  | Roof sheet worker [160 h]; General Labour [160 h]; Mobile Crane [40 h]; Equipment Operator [160 h]; Construction Cost [217508] | 217,507.55 | 217,507.55 | 05 | 02 | 04 |  |  |
| DAM3-C-B3-A-1440 |  | Steel members for office area | 7d | 2026-10-07 A | 2026-10-17 | DAM3-C-B3-A-1430, DAM3-C-B3-A-220 | 50% | 3.5d | 2026-10-07 | 2026-10-14 | 0d |  | Construction Cost [115805]; Equipment Operator [112 h]; General Labour [112 h]; Mobile Crane [56 h]; Structural Steel Fixer [112 h] | 115,805.2 | 57,902.6 | 05 | 02 | 04 | H1.C.A1.SA.FI.G.0730 | 1 |
| DAM3-C-B3-A-240 |  | Installation of wall sandwich panel | 5d | 2026-10-12 A | 2026-10-19 | DAM3-C-B3-A-260 | 50% | 2.5d | 2026-10-15 | 2026-10-21 | 31d | 0d | Sandwich panel worker [112 h]; General Labour [112 h]; Mobile Crane [40 h]; Equipment Operator [112 h]; Construction Cost [326261] | 326,261.32 | 163,130.66 | 05 | 02 | 04 |  |  |
| DAM3-C-B3-SS-1020 |  | Epoxy paint to steel members at office area | 7d | 2026-10-17 | 2026-10-25 | DAM3-C-B3-A-1440 |  |  |  |  | 0d |  | Painter [112 h]; Construction Cost [23161] | 23,161.04 |  | 05 | 02 | 04 | H1.C.A1.SA.FI.G.0730 | 1 |
| DAM3-C-B3-SS-1030 |  | Steel members for external platform | 7d | 2026-10-17 | 2026-10-25 | DAM3-C-B3-A-1440 |  |  |  |  | 25.5d | 0d | Construction Cost [18670.8]; General Labour [112 h]; Mobile Crane [56 h]; Structural Steel Fixer [112 h]; Equipment Operator [112 h] | 18,670.78 |  | 05 | 02 | 04 | H1.C.A1.SA.FI.G.0730 | 1 |
| DAM3-C-B3-SS-1040 |  | Epoxy paint for external platform | 5d | 2026-10-25 | 2026-10-31 | DAM3-C-B3-SS-1030, DAM3-C-B3-SS-1030 FF |  |  |  |  | 25.5d | 4.5d | Painter [80 h]; Construction Cost [3734.16] | 3,734.16 |  | 05 | 02 | 04 | H1.C.A1.SA.FI.G.0730 | 1 |
|  | 2 | **ARCHITECTURAL** |  | 2026-08-18 | 2027-02-10 |  |  |  |  |  |  |  |  |  |  |  |  |  |  |  |
|  | 1 | **MASONARY WORKS** |  | 2026-08-24 | 2026-09-09 |  |  |  |  |  |  |  |  |  |  |  |  |  |  |  |
| DAM3-C-B3-A-230 |  | Block work at factory area | 10d | 2026-08-24 A | 2026-09-01 A | DAM3-C-B3-S-837, DAM3-C-B3-A-220, DAM3-C-B4-A-230 | 100% |  | 2026-08-25 | 2026-09-05 |  |  | AAC panel erector [240 h]; General Labour [240 h]; Equipment Operator [240 h]; Mobile Crane [120 h]; Construction Cost [58338.7] | 58,338.72 | 58,338.72 | 05 | 03 | 04 |  |  |
| DAM3-C-B3-A-1030 |  | Block work at toilet area | 7d | 2026-08-25 A | 2026-09-03 A | DAM3-C-B3-A-260, DAM3-C-B3-SS-1020 | 100% |  | 2026-09-15 | 2026-09-22 |  |  | Mason [112 h]; Construction Cost [14436.3] | 14,436.31 | 14,436.31 | 05 | 03 | 04 |  | 1 |
| DAM3-C-B3-A-260 |  | Block work at office area | 7d | 2026-08-25 A | 2026-09-09 A | DAM3-C-B3-A-250 SS, DAM3-C-B3-A-1440 | 100% |  | 2026-09-07 | 2026-09-14 |  |  | AAC panel erector [160 h]; General Labour [160 h]; Mobile Crane [56 h]; Equipment Operator [160 h]; Construction Cost [6179.18] | 6,179.18 | 6,179.18 | 05 | 03 | 04 |  |  |
|  | 5 | **WALL FINISHES** |  | 2026-10-12 | 2027-01-17 |  |  |  |  |  |  |  |  |  |  |  |  |  |  |  |
| DAM3-C-B3-A-1040 |  | Internal Wall Plaster | 10d | 2026-10-12 A | 2026-11-05 | DAM3-C-B3-A-1030, DAM3-C-B3-E-643 | 25% | 7.5d | 2026-10-28 | 2026-11-08 | 0d |  | Mason [240 h]; Construction Cost [48590.2] | 48,590.16 | 12,147.54 | 05 | 03 | 04 | H1.C.A1.SA.FI.G.0710 | 1 |
| DAM3-C-B3-A-1090 |  | Paint to Plaster (Primer, Putty & First Coat) | 2d | 2027-01-16 | 2027-01-17 | DAM3-C-B3-A-1110, DAM3-C-B6-M-680 |  |  |  |  | 7.2d | 0d | Painter [112 h]; Construction Cost [44167.3] | 44,167.3 |  | 05 | 03 | 04 | H1.C.A1.SA.FI.G.0730 | 1 |
|  | 2 | **CIELING FINISHES** |  | 2027-01-07 | 2027-01-12 |  |  |  |  |  |  |  |  |  |  |  |  |  |  |  |
| DAM3-C-B3-A-1100 |  | Installation of Ceiling Gypsum Board | 5d | 2027-01-07 | 2027-01-12 | DAM3-C-B3-A-1080, DAM3-C-B3-S-1017, DAM3-C-B6-M-630, DAM3-C-B6-A-850 |  |  |  |  | 2.5d | 0d | Carperter [80 h]; Construction Cost [46792.3] | 46,792.3 |  | 05 | 03 | 04 | H1.C.A1.SA.FI.G.0820 | 1 |
|  | 6 | **FLOOR FINISHES** |  | 2026-11-10 | 2027-02-10 |  |  |  |  |  |  |  |  |  |  |  |  |  |  |  |
| DAM3-C-B3-A-1080 |  | Tiles for Toilet | 7d | 2026-11-10 | 2026-11-18 | DAM3-C-B3-A-1220 |  |  |  |  | 0d |  | Tile Fixer [112 h]; Construction Cost [46530.7] | 46,530.71 |  | 05 | 03 | 04 | H1.C.A1.SA.FI.G.0640 | 1 |
| DAM3-C-B3-A-1110 |  | Tiles for Office Area | 2d | 2027-01-13 | 2027-01-14 | DAM3-C-B3-A-1100 |  |  |  |  | 2.5d | 0d | Tile Fixer [32 h]; Construction Cost [26867.3] | 26,867.31 |  | 05 | 03 | 04 |  |  |
| DAM3-C-B3-A-1240 |  | Granite strip | 2d | 2027-01-16 | 2027-01-17 | DAM3-C-B3-A-1420, DAM3-C-B3-A-1110 |  |  |  |  | 2.5d | 0d | Tile Fixer [32 h]; Construction Cost [671.12] | 671.12 |  | 05 | 03 | 04 | H1.C.A1.SA.FI.G.0640 | 1 |
| DAM3-C-B3-A-1260 |  | Epoxy paint | 3d | 2027-02-08 | 2027-02-10 | DAM3-C-B3-A-1200 |  |  |  |  | 2.5d | 0d | Painter [112 h]; Construction Cost [115420] | 115,419.76 |  | 05 | 03 | 04 |  |  |

| ID | WBS | Activity | Duration | Start | Finish | Predecessors | Complete | Planned start | Planned finish | Total float | Free float | Resources | Cost | Actual cost | Phasing Code Category | Discipline | Project component code | Ordinal Start | Ordinal Finish | 00 Activity ID | Ordinal Duration | Zone # |
| --- | --- | --- | --- | --- | --- | --- | --- | --- | --- | --- | --- | --- | --- | --- | --- | --- | --- | --- | --- | --- | --- | --- |
|  | 3 | **DOORS & WINDOWS** |  | 2026-10-20 | 2026-11-04 |  |  |  |  |  |  |  |  |  |  |  |  |  |  |  |  |  |
| DAM3-C-B3-A-1420 |  | Window (CW1) | 7d | 2026-10-20 | 2026-10-27 | DAM3-C-B3-A-240 |  |  |  | 31d | 0d | Carperter [112 h]; Construction Cost [94173.2] | 94,173.21 |  | 05 | 03 | 04 |  |  |  |  |  |
| DAM3-C-B3-A-1050 |  | Roll up Shutter Door | 1d | 2026-10-28 | 2026-10-28 | DAM3-C-B3-A-1420 |  |  |  | 31d | 0d | Carperter [16 h]; Construction Cost [68619.2] | 68,619.2 |  | 05 | 03 | 04 |  |  |  |  |  |
| DAM3-C-B3-A-1060 |  | Supply and install (D5) 1000*2200mm single leaf steel door with door | 1d | 2026-10-29 | 2026-10-29 | DAM3-C-B3-A-1050 |  |  |  | 31d | 0d | Carperter [16 h]; Construction Cost [16016.2] | 16,016.16 |  | 05 | 03 | 04 |  |  |  |  |  |
| DAM3-C-B3-A-1120 |  | Supply and install (D4) 800*2200 mm single leaf aluminum door with door | 1d | 2026-10-31 | 2026-10-31 | DAM3-C-B3-A-1060 |  |  |  | 31d | 0d | Carperter [16 h]; Construction Cost [22737.8] | 22,737.85 |  | 05 | 03 | 04 |  |  |  |  |  |
| DAM3-C-B3-A-1130 |  | Supply and install (D7) 1000*2200 mm single leaf aluminum door with door | 1d | 2026-11-01 | 2026-11-01 | DAM3-C-B3-A-1120 |  |  |  | 31d | 0d | Carperter [16 h]; Construction Cost [7811.07] | 7,811.07 |  | 05 | 03 | 04 |  |  |  |  |  |
| DAM3-C-B3-A-1350 |  | Supply and install (D3) 1000*2200 mm single leaf aluminum door with door | 1d | 2026-11-02 | 2026-11-02 | DAM3-C-B3-A-1130 |  |  |  | 31d | 0d | Carperter [16 h]; Construction Cost [16016.2] | 16,016.16 |  | 05 | 03 | 04 |  |  |  |  |  |
| DAM3-C-B3-A-1360 |  | Supply and install fire rated 45 min (D2) 1200*2200 mm single leaf steel door | 1d | 2026-11-03 | 2026-11-03 | DAM3-C-B3-A-1350 |  |  |  | 31d | 0d | Carperter [16 h]; Construction Cost [16711.5] | 16,711.52 |  | 05 | 03 | 04 |  |  |  |  |  |
| DAM3-C-B3-A-1370 |  | Skylight fixtures installation | 1d | 2026-11-04 | 2026-11-04 | DAM3-C-B3-A-1360 |  |  |  | 31d | 24d | Carperter [16 h]; Construction Cost [6489.89] | 6,489.89 |  | 05 | 03 | 04 |  |  |  |  |  |
|  | 4 | **WATER PROOFING WORKS** |  | 2026-11-05 | 2026-11-10 |  |  |  |  |  |  |  |  |  |  |  |  |  |  |  |  |  |
| DAM3-C-B3-A-1220 |  | Waterproofing membrane for toilets | 4d | 2026-11-05 | 2026-11-10 | DAM3-C-B3-M-820, DAM3-C-B3-A-1040 |  |  |  | 0d |  | General Labour [64 h]; Construction Cost [4879.02] | 4,879.02 |  | 05 | 03 | 04 |  |  |  |  |  |
|  | 7 | **METAL WORKS** |  | 2026-08-18 | 2027-01-30 |  |  |  |  |  |  |  |  |  |  |  |  |  |  |  |  |  |
| DAM3-C-B3-A-1160 |  | Galvanised Steel Gratings | 2d | 2026-08-18 A | 2026-08-18 A | DAM3-C-B3-A-1170 | 100% | 2027-01-06 | 2027-01-07 |  |  | Steel Fixer [32 h]; General Labour [32 h]; Construction Cost [6455.16] | 6,455.16 | 6,455.16 | 05 | 03 | 04 |  |  |  |  |  |
| DAM3-C-B3-A-1150 |  | Steel Ladder | 2d | 2027-01-18 | 2027-01-19 | DAM3-C-B3-A-1240 |  |  |  | 2.5d | 0d | Steel Fixer [32 h]; General Labour [32 h]; Construction Cost [9839.16] | 9,839.16 |  | 05 | 03 | 04 |  |  |  |  |  |
| DAM3-C-B3-A-1250 |  | Steel railing works | 4d | 2027-01-20 | 2027-01-24 | DAM3-C-B3-A-1150 |  |  |  | 2.5d | 0d | Steel Fixer [64 h]; General Labour [64 h]; Construction Cost [1533.98] | 1,533.98 |  | 05 | 03 | 04 |  |  |  |  |  |
| DAM3-C-B3-A-1170 |  | Aluminium composite panel | 5d | 2027-01-25 | 2027-01-30 | DAM3-C-B3-A-1250 |  |  |  | 2.5d | 0d | Steel Fixer [80 h]; General Labour [80 h]; Construction Cost [175889] | 175,888.76 |  | 05 | 03 | 04 |  |  |  |  |  |
|  | 8 | **SPECIALTIES** |  | 2027-01-31 | 2027-02-07 |  |  |  |  |  |  |  |  |  |  |  |  |  |  |  |  |  |
| DAM3-C-B3-A-1180 |  | Installation of fittings | 3d | 2027-01-31 | 2027-02-02 | DAM3-C-B3-A-1160 |  |  |  | 2.5d | 0d | Plumber [112 h]; Construction Cost [22981.3] | 22,981.27 |  | 05 | 03 | 04 |  |  |  |  |  |
| DAM3-C-B3-A-1410 |  | Identification sign; ID01 & ID02 | 3d | 2027-02-03 | 2027-02-06 | DAM3-C-B3-A-1180 |  |  |  | 2.5d | 0d | Mason [48 h]; Construction Cost [9630.56] | 9,630.56 |  | 05 | 03 | 04 |  |  |  |  |  |
| DAM3-C-B3-A-1200 |  | Furniture Installation | 1d | 2027-02-07 | 2027-02-07 | DAM3-C-B3-A-1410 |  |  |  | 2.5d | 0d | General Labour [16 h]; Mason [16 h]; Construction Cost [12468.8] | 12,468.83 |  | 05 | 03 | 04 |  |  |  |  |  |
|  | 3 | **MECHANICAL** |  | 2026-07-30 | 2027-02-06 |  |  |  |  |  |  |  |  |  |  |  |  |  |  |  |  |  |
|  | 1 | **HVAC** |  | 2027-01-18 | 2027-02-02 |  |  |  |  |  |  |  |  |  |  |  |  |  |  |  |  |  |
|  | 1 | **FIRST STAGE** |  | 2027-01-25 | 2027-01-28 |  |  |  |  |  |  |  |  |  |  |  |  |  |  |  |  |  |
| DAM3-C-B3-M-760 |  | Installation of HVAC Ducts | 2d | 2027-01-25 | 2027-01-26 | DAM3-C-B3-M-780 |  |  |  | 7.2d | 0d | Ductman [32 h]; Construction Cost [149489] | 149,489.33 |  | 05 | 04 | 04 | 0 | 0 | H1.C.A1.0A.MH.G.1040 | 0 | 1 |
| DAM3-C-B3-M-790 |  | Installation of Duct insulation | 2d | 2027-01-27 | 2027-01-28 | DAM3-C-B3-M-760 |  |  |  | 7.2d | 0d | Ductman [32 h]; Construction Cost [21205.4] | 21,205.4 |  | 05 | 04 | 04 |  |  |  |  |  |

| ID | WBS | Activity | Duration | Start | Finish | Predecessors | Complete | Planned start | Planned finish | Total float | Free float | Resources | Cost | Actual cost | Ordinal Start | Ordinal Finish | 00 Activity ID | Ordinal Duration | Zone # | Phasing Code Category | Discipline | Project component code |
| --- | --- | --- | --- | --- | --- | --- | --- | --- | --- | --- | --- | --- | --- | --- | --- | --- | --- | --- | --- | --- | --- | --- |
|  | 2 | **SECOND STAGE** |  | 2027-01-18 | 2027-02-02 |  |  |  |  |  |  |  |  |  |  |  |  |  |  |  |  |  |
| DAM3-C-B3-M-750 |  | Installation of Exhaust Fans | 2d | 2027-01-18 | 2027-01-19 | DAM3-C-B3-A-1090 |  |  |  | 7.2d | 0d | AC Technician [32 h]; Construction Cost [7938.56] | 7,938.56 |  | 0 | 0 | H1.C.A1.0A.MH.X.4050 | 0 | 1 | 05 | 04 | 04 |
| DAM3-C-B3-M-780 |  | Installation of Wall Propeller Type Exhaust Fan | 4d | 2027-01-20 | 2027-01-24 | DAM3-C-B3-M-750 |  |  |  | 7.2d | 0d | AC Technician [64 h]; Construction Cost [46831.6] | 46,831.64 |  |  |  |  |  |  | 05 | 04 | 04 |
| DAM3-C-B3-M-770 |  | Installation of Diffuser | 2d | 2027-01-30 | 2027-01-31 | DAM3-C-B3-M-790 |  |  |  | 7.2d | 0d | Ductman [32 h]; Construction Cost [2144] | 2,144 |  | 0 | 0 | H1.C.A1.0A.MH.G.3010 | 0 | 1 | 05 | 04 | 04 |
| DAM3-C-B3-M-960 |  | Supply, install, test and commission door grilles & exhaust louvers | 2d | 2027-02-01 | 2027-02-02 | DAM3-C-B3-M-770 |  |  |  | 7.2d | 0d | Ductman [32 h]; Construction Cost [5574.4] | 5,574.4 |  | 0 | 0 | H1.C.A1.0A.MH.G.3010 | 0 | 1 | 05 | 04 | 04 |
|  | 2 | **FIRE FIGHTING SYSTEM** |  | 2026-09-21 | 2027-02-06 |  |  |  |  |  |  |  |  |  |  |  |  |  |  |  |  |  |
|  | 1 | **FIRST STAGE** |  | 2026-09-21 | 2026-09-28 |  |  |  |  |  |  |  |  |  |  |  |  |  |  |  |  |  |
| DAM3-C-B3-M-920 |  | Installation of Fire Fighting Pipes (Seamless Black Steel) | 7d | 2026-09-21 A | 2026-09-28 A | DAM3-C-B3-A-1090 | 100% | 2027-01-09 | 2027-01-16 |  |  | Pipe Fitter [112 h]; Construction Cost [72394.8] | 72,394.75 | 72,394.75 | 0 | 0 | H1.C.A1.0A.MF.G.1010 | 0 | 1 | 05 | 04 | 04 |
| DAM3-C-B3-M-930 |  | Installation of Fire Fighting Valve | 5d | 2026-09-22 A | 2026-09-28 A | DAM3-C-B3-M-920 | 100% | 2027-01-17 | 2027-01-21 |  |  | Pipe Fitter [80 h]; Construction Cost [12199.4] | 12,199.4 | 12,199.4 | 0 | 0 | H1.C.A1.0A.MF.G.2010 | 0 | 1 | 05 | 04 | 04 |
|  | 2 | **SECOND STAGE** |  | 2027-01-18 | 2027-02-06 |  |  |  |  |  |  |  |  |  |  |  |  |  |  |  |  |  |
| DAM3-C-B3-M-940 |  | Installation of Fire Hose Cabinet | 3d | 2027-01-18 | 2027-01-20 | DAM3-C-B3-M-930 |  |  |  | 20.8d | 13d | Pipe Fitter [48 h]; Construction Cost [15158.6] | 15,158.56 |  | 0 | 0 | H1.C.A1.0A.MF.G.3010 | 0 | 1 | 05 | 04 | 04 |
| DAM3-C-B3-M-990 |  | Supply, install, test and commission Fire Department Connection(FDC) | 3d | 2027-02-03 | 2027-02-06 | DAM3-C-B3-M-960 |  |  |  | 7.2d | 0d | Pipe Fitter [48 h]; Construction Cost [2706.06] | 2,706.06 |  | 0 | 0 | H1.C.A1.0A.MF.G.3010 | 0 | 1 | 05 | 04 | 04 |
|  | 3 | **SEWER AND DRAINAGE SYSTEM** |  | 2026-07-30 | 2026-12-07 |  |  |  |  |  |  |  |  |  |  |  |  |  |  |  |  |  |
|  | 1 | **FIRST STAGE** |  | 2026-07-30 | 2026-11-21 |  |  |  |  |  |  |  |  |  |  |  |  |  |  |  |  |  |
| DAM3-C-B3-M-820 |  | Installation of Sanitary Waste / Drainage Pipes | 4d | 2026-07-30 A | 2026-08-03 A | DAM3-C-B3-S-977 | 100% | 2026-08-01 | 2026-08-04 |  |  | Plumber [64 h]; Construction Cost [18585.1] | 18,585.14 | 18,585.14 | 0 | 0 | H1.C.K1.00.MP.G.1020 | 0 | 1 | 05 | 04 | 04 |
| DAM3-C-B3-M-1000 |  | Installation of Trench drain | 5d | 2026-08-08 A | 2026-08-09 A | DAM3-C-B3-M-840 | 100% | 2026-10-24 | 2026-10-29 |  |  | Plumber [80 h]; Construction Cost [11508.8] | 11,508.8 | 11,508.8 |  |  |  |  |  | 05 | 04 | 04 |
| DAM3-C-B3-M-840 |  | Installation of Floor Drain | 2d | 2026-11-18 | 2026-11-21 | DAM3-C-B3-M-820, DAM3-C-B3-A-1080 |  |  |  | 0d |  | Plumber [32 h]; Construction Cost [11056] | 11,055.96 |  |  |  |  |  | 1 | 05 | 04 | 04 |
|  | 2 | **SECOND STAGE** |  | 2026-11-21 | 2026-12-07 |  |  |  |  |  |  |  |  |  |  |  |  |  |  |  |  |  |
| DAM3-C-B3-M-800 |  | Installation of Electric Water Heater | 2d | 2026-11-21 | 2026-11-23 | DAM3-C-B3-M-1000 |  |  |  | 0d |  | Plumber [32 h]; Construction Cost [1819.51] | 1,819.51 |  | 0 | 0 | H1.C.K1.00.MP.G.1030 | 0 | 1 | 05 | 04 | 04 |
| DAM3-C-B3-M-810 |  | Installation of Sanitary Fixture and Accessories | 4d | 2026-11-23 | 2026-11-28 | DAM3-C-B3-M-800 |  |  |  | 0d |  | Plumber [64 h]; Construction Cost [19921.7] | 19,921.72 |  | 0 | 0 | H1.C.K1.00.MP.G.2040 | 0 | 1 | 05 | 04 | 04 |
| DAM3-C-B3-M-830 |  | Installation of Lavotary /Wash Basin | 2d | 2026-11-28 | 2026-11-30 | DAM3-C-B3-M-800, DAM3-C-B3-M-810 |  |  |  | 0d |  | Plumber [32 h]; Construction Cost [21416.7] | 21,416.68 |  |  |  |  |  | 1 | 05 | 04 | 04 |
| DAM3-C-B3-M-890 |  | Installation of Bib Tap | 2d | 2026-11-30 | 2026-12-02 | DAM3-C-B3-M-810, DAM3-C-B3-M-830 |  |  |  | 0d |  | Plumber [32 h]; Construction Cost [1900.66] | 1,900.66 |  |  |  |  |  |  | 05 | 04 | 04 |
| DAM3-C-B3-M-850 |  | Installation of Water Tap | 2d | 2026-12-02 | 2026-12-05 | DAM3-C-B3-M-830, DAM3-C-B3-M-890 |  |  |  | 0d |  | Plumber [32 h]; Construction Cost [2874.14] | 2,874.14 |  |  |  |  |  |  | 05 | 04 | 04 |
| DAM3-C-B3-M-860 |  | Installation of Roof Vent Cap | 2d | 2026-12-05 | 2026-12-07 | DAM3-C-B3-M-850 |  |  |  | 0d |  | Pipe Fitter [32 h]; Construction Cost [927.12] | 927.12 |  |  |  |  |  |  | 05 | 04 | 04 |

| ID | WBS | Activity | Duration | Start | Finish | Predecessors | Complete | Remaining | Planned start | Planned finish | Total float | Free float | Resources | Cost | Actual cost | Ordinal Start | Ordinal Finish | 00 Activity ID | Ordinal Duration | Zone # | Phasing Code Category | Discipline | Project component code |
| --- | --- | --- | --- | --- | --- | --- | --- | --- | --- | --- | --- | --- | --- | --- | --- | --- | --- | --- | --- | --- | --- | --- | --- |
|  | 4 | **WATER SUPPLY SYSTEM** |  | 2026-10-01 | 2027-01-23 |  |  |  |  |  |  |  |  |  |  |  |  |  |  |  |  |  |  |
|  | 1 | **FIRST STAGE** |  | 2026-10-01 | 2026-10-04 |  |  |  |  |  |  |  |  |  |  |  |  |  |  |  |  |  |  |
| DAM3-C-B3-M-900 |  | Installation of Water Supply Valve | 2d | 2026-10-01 A | 2026-10-04 A | DAM3-C-B3-M-910 | 100% |  | 2027-01-24 | 2027-01-25 |  |  | Plumber [32 h]; Construction Cost [18274.3] | 18,274.27 | 18,274.27 | 0 | 0 | H1.C.K1.00.MP.G.2010 | 0 | 1 | 05 | 04 | 04 |
| DAM3-C-B3-M-910 |  | Installation of Water Supply Pipes | 4d | 2026-10-01 A | 2026-10-04 A | DAM3-C-B3-A-1090 | 100% |  | 2027-01-19 | 2027-01-23 |  |  | Plumber [64 h]; Construction Cost [23318.4] | 23,318.41 | 23,318.41 | 0 | 0 | H1.C.K1.00.MP.G.1010 | 0 | 1 | 05 | 04 | 04 |
|  | 2 | **SECOND STAGE** |  | 2027-01-18 | 2027-01-23 |  |  |  |  |  |  |  |  |  |  |  |  |  |  |  |  |  |  |
| DAM3-C-B3-M-950 |  | Capped connection | 5d | 2027-01-18 | 2027-01-23 | DAM3-C-B3-M-900 |  |  |  |  | 18.8d | 11d | Plumber [80 h]; Construction Cost [278.13] | 278.13 |  |  |  |  |  |  | 05 | 04 | 04 |
|  | 4 | **ELECTRICAL** |  | 2026-06-17 | 2027-02-15 |  |  |  |  |  |  |  |  |  |  |  |  |  |  |  |  |  |  |
|  | 1 | **FIRST STAGE** |  | 2026-06-17 | 2027-02-13 |  |  |  |  |  |  |  |  |  |  |  |  |  |  |  |  |  |  |
| DAM3-C-B3-E-573 |  | Installation of Earthing and Grounding | 4d | 2026-06-17 A | 2027-02-09 | DAM3-C-B3-E-683 SS | 90% | 0.4d | 2027-03-17 | 2027-03-21 | 12.8d | 0d | Electrician [64 h]; Construction Cost [19646.5] | 19,646.47 | 17,681.82 |  |  | H1.C.K1.00.EM.G.2040 |  | 1 | 05 | 05 | 04 |
| DAM3-C-B3-E-643 |  | Installation of Sleeves & Power outlet | 5d | 2026-06-17 A | 2026-10-27 | DAM3-C-B3-A-1030 | 50% | 2.5d | 2026-09-07 | 2026-09-12 | 0d |  | Electrician [128 h]; Construction Cost [2920.45] | 2,920.45 | 1,460.23 |  |  |  |  | 1 | 05 | 05 | 04 |
| DAM3-C-B3-E-603 |  | Installation of Conduits and wiring outlets - Fire Alarm System | 4d | 2026-07-21 A | 2027-01-26 | DAM3-C-B3-E-663 | 50% | 2d | 2027-01-14 | 2027-01-19 | 7.2d | 0d | Electrician [64 h]; Construction Cost [1768.31] | 1,768.31 | 884.15 |  |  | H1.C.K1.00.EL.G.1020 |  | 1 | 05 | 05 | 04 |
| DAM3-C-B3-E-623 |  | Installation of Conduites for Lighting Fixture | 4d | 2026-09-23 A | 2027-02-06 | DAM3-C-B3-E-593, DAM3-C-B3-M-950, DAM3-C-B3-M-940 | 90% | 0.4d | 2027-02-11 | 2027-02-15 | 7.8d | 0.6d | Electrician [64 h]; Construction Cost [8462.97] | 8,462.97 | 7,616.67 |  |  | H1.C.K1.00.EM.G.2030 |  | 1 | 05 | 05 | 04 |
| DAM3-C-B3-E-693 |  | Installation of Wires | 2d | 2027-02-07 | 2027-02-08 | DAM3-C-B3-E-623, DAM3-C-B3-M-990 |  |  |  |  | 7.2d | 0d | Electrician [64 h]; Construction Cost [16925.9] | 16,925.94 |  |  |  |  |  |  | 05 | 05 | 04 |
| DAM3-C-B3-E-683 |  | Installation of LV Cables | 4d | 2027-02-09 | 2027-02-13 | DAM3-C-B3-E-693 |  |  |  |  | 9.2d | 0d | Electrician [64 h]; Construction Cost [36390] | 36,389.98 |  |  |  |  |  |  | 05 | 05 | 04 |
|  | 2 | **SECOND STAGE** |  | 2026-11-15 | 2027-02-15 |  |  |  |  |  |  |  |  |  |  |  |  |  |  |  |  |  |  |
| DAM3-C-B3-E-1040 |  | Installation of Solar power plant | 7d | 2026-11-15 | 2026-11-22 | DAM3-C-B4-E-1040 |  |  |  |  | 39.5d | 32.5d | Plumber [112 h]; Construction Cost [253269] | 253,268.71 |  |  |  |  |  |  | 05 | 05 | 04 |
| DAM3-C-B3-E-633 |  | Installation of Wiring Devices | 4d | 2027-01-18 | 2027-01-21 | DAM3-C-B3-E-643, DAM3-C-B3-A-1090 |  |  |  |  | 7.2d | 0d | Electrician [64 h]; Construction Cost [19435.1] | 19,435.09 |  |  |  | H1.C.K1.00.EM.G.3020 |  | 1 | 05 | 05 | 04 |
| DAM3-C-B3-E-663 |  | Installation of Disconnect Switches | 2d | 2027-01-23 | 2027-01-24 | DAM3-C-B3-E-633 |  |  |  |  | 7.2d | 0d | Electrician [32 h]; Construction Cost [30236] | 30,235.95 |  |  |  |  |  |  | 05 | 05 | 04 |
| DAM3-C-B3-E-583 |  | Installation of Fire Alarm Control Panel | 4d | 2027-01-27 | 2027-01-31 | DAM3-C-B3-E-603, DAM3-C-B3-M-860 |  |  |  |  | 7.2d | 0d | Electrician [64 h]; Construction Cost [19451.4] | 19,451.37 |  |  |  | H1.C.K1.00.EL.X.4120 |  | 1 | 05 | 05 | 04 |
| DAM3-C-B3-E-593 |  | Installation of Fire Detectors & Accessories | 4d | 2027-02-01 | 2027-02-04 | DAM3-C-B3-E-583 |  |  |  |  | 7.2d | 0d | Electrician [64 h]; Construction Cost [56740.4] | 56,740.37 |  |  |  | H1.C.K1.00.EL.G.3020 |  | 1 | 05 | 05 | 04 |
| DAM3-C-B3-E-733 |  | Installation of Access Control System | 3d | 2027-02-06 | 2027-02-08 | DAM3-C-B3-E-593 |  |  |  |  | 7.2d | 0d | Electrician [80 h]; Construction Cost [27616.9] | 27,616.86 |  |  |  | H1.C.K1.00.EM.G.2040 |  | 1 | 05 | 05 | 04 |
| DAM3-C-B3-E-613 |  | Installation of Lighting fixtures | 4d | 2027-02-09 | 2027-02-13 | DAM3-C-B3-E-693 |  |  |  |  | 9.2d | 2d | Electrician [64 h]; Construction Cost [76166.7] | 76,166.74 |  |  |  | H1.C.K1.00.EM.G.3010 |  | 1 | 05 | 05 | 04 |
| DAM3-C-B3-E-653 |  | Installation of Main Distribution Board | 2d | 2027-02-09 | 2027-02-10 | DAM3-C-B3-E-693, DAM3-C-B4-E-763, DAM3-C-B4-E-613 |  |  |  |  | 7.2d | 0d | Electrician [32 h]; Construction Cost [32472.7] | 32,472.73 |  |  |  | H1.C.K1.00.EM.G.2020 |  | 1 | 05 | 05 | 04 |
| DAM3-C-B3-E-743 |  | Monitor Modules for Fire Alarm | 2d | 2027-02-09 | 2027-02-10 | DAM3-C-B3-E-733 |  |  |  |  | 7.2d | 0d | Electrician [32 h]; Construction Cost [3882.38] | 3,882.38 |  |  |  | H1.C.K1.00.EM.G.2040 |  | 1 | 05 | 05 | 04 |
| DAM3-C-B3-E-1030 |  | Installation of CCTV System | 3d | 2027-02-11 | 2027-02-14 | DAM3-C-B3-E-643, DAM3-C-B3-E-713 SS |  |  |  |  | 8.2d | 0d | Plumber [112 h]; Construction Cost [76349.2] | 76,349.24 |  |  |  |  |  |  | 05 | 05 | 04 |
| DAM3-C-B3-E-703 |  | Installation of LP-1 Panel | 2d | 2027-02-11 | 2027-02-13 | DAM3-C-B3-E-653 |  |  |  |  | 7.2d | 0d | Electrician [32 h]; Construction Cost [18403.5] | 18,403.54 |  |  |  | H1.C.K1.00.EM.G.2020 |  | 1 | 05 | 05 | 04 |
| DAM3-C-B3-E-713 |  | Installation of PP-AC panel | 2d | 2027-02-11 | 2027-02-13 | DAM3-C-B3-E-703 SS |  |  |  |  | 7.2d | 0d | Electrician [32 h]; Construction Cost [21648.5] | 21,648.48 |  |  |  | H1.C.K1.00.EM.G.2020 |  | 1 | 05 | 05 | 04 |
| DAM3-C-B3-E-753 |  | Line Isolator Modules for Fire Alarm | 2d | 2027-02-11 | 2027-02-13 | DAM3-C-B3-E-743 |  |  |  |  | 7.2d | 0d | Electrician [32 h]; Construction Cost [185.4] | 185.4 |  |  |  | H1.C.K1.00.EM.G.2040 |  | 1 | 05 | 05 | 04 |
| DAM3-C-B3-E-673 |  | Installation of Telephone Cabinet | 2d | 2027-02-14 | 2027-02-15 | DAM3-C-B3-E-713 |  |  |  |  | 7.2d | 0d | Electrician [32 h]; Construction Cost [26991.1] | 26,991.08 |  |  |  |  |  | 1 | 05 | 05 | 04 |
| DAM3-C-B3-E-763 |  | Firewarning flash light with sounder; wall mounted, Weather proof | 2d | 2027-02-14 | 2027-02-15 | DAM3-C-B3-E-753 |  |  |  |  | 7.2d | 0d | Electrician [32 h]; Construction Cost [3082.69] | 3,082.69 |  |  |  | H1.C.K1.00.EM.G.2040 |  | 1 | 05 | 05 | 04 |

| ID | WBS | Activity | Duration | Start | Finish | Predecessors | Complete | Planned start | Planned finish | Resources | Cost | Actual cost | 00 Activity ID | AMH Tender Act. ID | Tender Original Duration | Zone # | Phasing Code Category | Discipline | Project component code |
| --- | --- | --- | --- | --- | --- | --- | --- | --- | --- | --- | --- | --- | --- | --- | --- | --- | --- | --- | --- |
|  | 5 | **BLOCK B2** |  | 2026-02-17 | 2027-02-15 |  |  |  |  |  |  |  |  |  |  |  |  |  |  |
|  | 1 | **STRUCTURAL** |  | 2026-02-17 | 2026-11-21 |  |  |  |  |  |  |  |  |  |  |  |  |  |  |
|  | 1 | **FOOTING** |  | 2026-02-17 | 2026-05-13 |  |  |  |  |  |  |  |  |  |  |  |  |  |  |
| DAM3-C-B2-S-150 |  | Excavation for footings | 4d | 2026-02-17 A | 2026-03-24 A | DAM3-C-B3-S-210 | 100% | 2026-03-31 | 2026-04-05 | General Labour [112 h]; Equipment Operator [112 h]; Truck [64 h]; Excavator [64 h]; Mini Roller Compactor [64 h]; Construction Cost [89859.6] | 89,859.61 | 89,859.61 | H1.C.K1.00.SW.F.1010 | PH1-MHR-ST-640 | 12 | 1 | 05 | 01 | 05 |
| DAM3-C-B2-S-6223 |  | Soil replacement - rock fill | 4d | 2026-03-17 A | 2026-03-24 A | DAM3-C-B2-S-150 | 100% | 2026-03-30 | 2026-04-04 | General Labour [128 h]; Truck [64 h]; Mini Roller Compactor [64 h]; Equipment Operator [128 h]; Wheel Loader [64 h]; Construction Cost [179062] | 179,061.91 | 179,061.91 | H1.C.K1.00.SW.F.1060 | PH1-MHR-ST-645 | 15 | 1 | 05 | 01 | 05 |
| DAM3-C-B2-S-6233 |  | Engineering fill | 4d | 2026-03-28 A | 2026-04-06 A | DAM3-C-B2-S-6223, DAM3-C-B2-S-6223 FF | 100% | 2026-04-04 | 2026-04-07 | General Labour [256 h]; Truck [64 h]; Mini Roller Compactor [64 h]; Equipment Operator [256 h]; Wheel Loader [64 h]; Construction Cost [46046.2] | 46,046.19 | 46,046.19 | H1.C.K1.00.SW.F.1060 | PH1-MHR-ST-645 | 15 | 1 | 05 | 01 | 05 |
| DAM3-C-B2-S-101 |  | Anti Termite Below Footings | 1d | 2026-04-13 A | 2026-04-13 A | DAM3-C-B2-S-6233 | 100% | 2026-04-18 | 2026-04-18 | Mason [16 h]; Construction Cost [11905.5] | 11,905.55 | 11,905.55 | H1.C.K1.00.SW.F.1030 | PH1-MHR-ST-1020 | 10 | 1 | 05 | 01 | 05 |
| DAM3-C-B2-S-102 |  | Vapour Barrier for Footings | 1d | 2026-04-13 A | 2026-04-13 A | DAM3-C-B2-S-101 | 100% | 2026-04-19 | 2026-04-19 | General Labour [16 h]; Construction Cost [7940.1] | 7,940.1 | 7,940.1 | H1.C.K1.00.SW.F.1040 | PH1-MHR-ST-1080 | 15 | 1 | 05 | 01 | 05 |
| DAM3-C-B2-S-103 |  | Lean Concrete Below Footings | 2d | 2026-04-13 A | 2026-04-13 A | DAM3-C-B2-S-102 | 100% | 2026-04-20 | 2026-04-21 | Mason [32 h]; Construction Cost [8229.34] | 8,229.34 | 8,229.34 | H1.C.K1.00.SW.F.1030 | PH1-MHR-ST-1020 | 10 | 1 | 05 | 01 | 05 |
| DAM3-C-B2-S-104 |  | Rebar for Footings | 4d | 2026-05-06 A | 2026-05-11 A | DAM3-C-B2-S-103 | 100% | 2026-05-09 | 2026-05-12 | Steel Fixer [64 h]; Construction Cost [101845] | 101,844.98 | 101,844.98 |  |  |  | 1 | 05 | 01 | 05 |
| DAM3-C-B2-S-105 |  | Formwork for Footings | 4d | 2026-05-10 A | 2026-05-12 A | DAM3-C-B2-S-104 | 100% | 2026-05-14 | 2026-05-19 | Carperter [64 h]; Construction Cost [25461.2] | 25,461.25 | 25,461.25 |  |  |  | 1 | 05 | 01 | 05 |
| DAM3-C-B2-S-106 |  | Pouring Concrete for Footings | 1d | 2026-05-13 A | 2026-05-13 A | DAM3-C-B2-S-105 | 100% | 2026-05-16 | 2026-05-16 | Carperter [16 h]; Mason [16 h]; Steel Fixer [16 h]; Concrete Mixer [8 h]; Equipment Operator [16 h]; Construction Cost [127306] | 127,306.23 | 127,306.23 | H1.C.K1.00.RC.F.1010 | PH1-MHR-ST-1030 | 21 | 1 | 05 | 01 | 05 |
|  | 2 | **COLUMN NECK** |  | 2026-05-10 | 2026-06-09 |  |  |  |  |  |  |  |  |  |  |  |  |  |  |
| DAM3-C-B2-S-257 |  | Rebar for column neck | 4d | 2026-05-10 A | 2026-05-12 A | DAM3-C-B2-S-106 | 100% | 2026-05-16 | 2026-05-19 | Steel Fixer [64 h]; Construction Cost [14919.2] | 14,919.19 | 14,919.19 |  |  |  | 1 | 05 | 01 | 05 |
| DAM3-C-B2-S-267 |  | Formwork for column neck | 2d | 2026-05-14 A | 2026-05-16 A | DAM3-C-B2-S-257 | 100% | 2026-05-21 | 2026-05-23 | Carperter [32 h]; Construction Cost [9946.13] | 9,946.13 | 9,946.13 |  |  |  | 1 | 05 | 01 | 05 |
| DAM3-C-B2-S-297 |  | Pouring Concrete for column neck | 1d | 2026-05-17 A | 2026-05-18 A | DAM3-C-B2-S-267 | 100% | 2026-05-24 | 2026-05-24 | Mason [16 h]; Carperter [16 h]; Concrete Mixer [8 h]; Steel Fixer [16 h]; Equipment Operator [16 h]; Construction Cost [24865.3] | 24,865.31 | 24,865.31 | H1.C.K1.00.RC.F.1110 | PH1-MHR-ST-1030 | 21 | 1 | 05 | 01 | 05 |
| DAM3-C-B2-S-307 |  | Damp proof /Bitumin paint on Footings & column neck | 2d | 2026-05-19 A | 2026-05-20 A | DAM3-C-B2-S-297 | 100% | 2026-05-24 | 2026-05-25 | Painter [32 h]; Construction Cost [24777.7] | 24,777.73 | 24,777.73 | H1.C.K1.00.SW.F.1050 | PH1-MHR-ST-1080 | 15 | 1 | 05 | 01 | 05 |
| DAM3-C-B2-S-367 |  | Backfilling / Compaction up to Bottom of Grade Beams | 7d | 2026-05-24 A | 2026-06-09 A | DAM3-C-B2-S-307 | 100% | 2026-05-30 | 2026-06-06 | General Labour [256 h]; Truck [128 h]; Mini Roller Compactor [128 h]; Equipment Operator [256 h]; Wheel Loader [128 h]; Construction Cost [46046.2] | 46,046.19 | 46,046.19 | H1.C.K1.00.SW.F.1060 | PH1-MHR-ST-645 | 15 | 1 | 05 | 01 | 05 |
|  | 3 | **GRADE BEAM** |  | 2026-06-13 | 2026-06-25 |  |  |  |  |  |  |  |  |  |  |  |  |  |  |
| DAM3-C-B2-S-337 |  | Vapour barrier for Grade Beams | 2d | 2026-06-13 A | 2026-06-13 A | DAM3-C-B2-S-527 | 100% | 2026-06-16 | 2026-06-17 | General Labour [32 h]; Construction Cost [5293.4] | 5,293.4 | 5,293.4 | H1.C.K1.00.SW.F.1040 | PH1-MHR-ST-1080 | 15 | 1 | 05 | 01 | 05 |
| DAM3-C-B2-S-338 |  | Lean Concrete Below Grade Beams | 2d | 2026-06-13 A | 2026-06-13 A | DAM3-C-B2-S-337 | 100% | 2026-06-18 | 2026-06-20 | Mason [32 h]; Construction Cost [4431.19] | 4,431.19 | 4,431.19 | H1.C.K1.00.SW.F.1130 | PH1-MHR-ST-1020 | 10 | 1 | 05 | 01 | 05 |
| DAM3-C-B2-S-527 |  | Anti Termite Below Grade Beams | 1d | 2026-06-13 A | 2026-06-13 A | DAM3-C-B2-S-367 | 100% | 2026-06-15 | 2026-06-15 | Mason [16 h]; Construction Cost [11905.5] | 11,905.55 | 11,905.55 | H1.C.K1.00.SW.F.1030 | PH1-MHR-ST-1020 | 10 | 1 | 05 | 01 | 05 |
| DAM3-C-B2-S-339 |  | Rebar for Grade Beams | 5d | 2026-06-15 A | 2026-06-18 A | DAM3-C-B2-S-338 | 100% | 2026-06-16 | 2026-06-21 | Steel Fixer [80 h]; Construction Cost [27194.5] | 27,194.46 | 27,194.46 |  |  |  | 1 | 05 | 01 | 05 |
| DAM3-C-B2-S-340 |  | Formwork for Grade Beams | 2d | 2026-06-17 A | 2026-06-21 A | DAM3-C-B2-S-339 | 100% | 2026-06-23 | 2026-06-25 | Carperter [32 h]; Construction Cost [6798.61] | 6,798.61 | 6,798.61 |  |  |  | 1 | 05 | 01 | 05 |
| DAM3-C-B2-S-341 |  | Anchor bolts installation | 2d | 2026-06-18 A | 2026-06-20 A | DAM3-C-B2-S-340 SS | 100% | 2026-06-22 | 2026-06-23 | Carperter [32 h]; Construction Cost [57238.8] | 57,238.83 | 57,238.83 |  |  |  | 1 | 05 | 01 | 05 |
| DAM3-C-B2-S-342 |  | Pouring Concrete for Grade Beams | 1d | 2026-06-22 A | 2026-06-22 A | DAM3-C-B2-S-340, DAM3-C-B2-S-341 | 100% | 2026-06-24 | 2026-06-24 | Mason [16 h]; Carperter [16 h]; Concrete Mixer [8 h]; Steel Fixer [16 h]; Equipment Operator [16 h]; Construction Cost [33993.1] | 33,993.09 | 33,993.09 | H1.C.K1.00.RC.F.1110 | PH1-MHR-ST-1030 | 21 | 1 | 05 | 01 | 05 |
| DAM3-C-B2-S-347 |  | Damp proof /Bitumin paint on Grade Beams | 5d | 2026-06-24 A | 2026-06-25 A | DAM3-C-B2-S-342 | 100% | 2026-06-28 | 2026-07-02 | Painter [80 h]; Construction Cost [24777.7] | 24,777.73 | 24,777.73 | H1.C.K1.00.SW.F.1050 | PH1-MHR-ST-1080 | 15 | 1 | 05 | 01 | 05 |

| ID | WBS | Activity | Duration | Start | Finish | Predecessors | Complete | Planned start | Planned finish | Total float | Free float | Resources | Cost | Actual cost | Zone # | Phasing Code Category | Discipline | Project component code | 00 Activity ID | AMH Tender Act. ID | Tender Original Duration | project summary-4 | PS (su & rbf)-4 | New code for weekly report-4 | New discipline code-4 |
| --- | --- | --- | --- | --- | --- | --- | --- | --- | --- | --- | --- | --- | --- | --- | --- | --- | --- | --- | --- | --- | --- | --- | --- | --- | --- |
|  | 5 | **SLAB ON GRADE** |  | 2026-07-02 | 2026-11-21 |  |  |  |  |  |  |  |  |  |  |  |  |  |  |  |  |  |  |  |  |
| DAM3-C-B2-S-377 |  | Backfilling / Compaction for Slab on Grade | 7d | 2026-07-02 A | 2026-07-06 A | DAM3-C-B2-S-347 | 100% | 2026-07-04 | 2026-07-11 |  |  | Mini Roller Compactor [128 h]; General Labour [256 h]; Equipment Operator [256 h]; Wheel Loader [128 h]; Truck [128 h]; Construction Cost [23023.1] | 23,023.09 | 23,023.09 | 1 | 05 | 01 | 05 |  |  |  |  |  |  |  |
| DAM3-C-B2-S-378 |  | Anti Termite Treatment below Ground Slab | 1d | 2026-08-09 A | 2026-08-10 A | DAM3-C-B2-S-377, P001-C-TC-M-3406 | 100% | 2026-08-26 | 2026-08-27 |  |  | General Labour [16 h]; Construction Cost [15874.1] | 15,874.08 | 15,874.08 | 1 | 05 | 01 | 05 | H1.C.A1.06.SW.F.1220 | PH1-MHR-ST-645 | 15 |  |  |  |  |
| DAM3-C-B2-S-379 |  | Vapour barrier for below Ground Slab | 2d | 2026-08-09 A | 2026-08-10 A | DAM3-C-B2-S-378 | 100% | 2026-08-27 | 2026-08-30 |  |  | General Labour [32 h]; Construction Cost [13233.5] | 13,233.49 | 13,233.49 | 1 | 05 | 01 | 05 |  |  |  |  |  |  |  |
| DAM3-C-B2-S-382 |  | Pouring Concrete for Ground Slab | 4d | 2026-08-09 A | 2026-08-10 A | DAM3-C-B2-S-379, DAM3-C-B5-S-6133, DAM3-C-B11-S-6133 | 100% | 2026-09-15 | 2026-09-19 |  |  | Mason [64 h]; Carperter [64 h]; Steel Fixer [64 h]; Concrete Mixer [32 h]; Equipment Operator [64 h]; Construction Cost [344195] | 344,195.21 | 344,195.21 | 1 | 05 | 01 | 05 | H1.C.A1.06.RC.G.1210 | PH1-MHR-ST-496 | 24 |  |  |  |  |
| DAM3-C-B2-S-517 |  | Concrete pad | 7d | 2026-11-14 | 2026-11-21 | DAM3-C-B2-A-0150 |  |  |  | 17d | 10d | Mason [112 h]; Construction Cost [907.11] | 907.11 |  |  | 05 | 01 | 05 |  |  |  |  |  |  |  |
|  | 4 | **COLUMNS & BEAMS** |  | 2026-06-15 | 2026-10-04 |  |  |  |  |  |  |  |  |  |  |  |  |  |  |  |  |  |  |  |  |
| DAM3-C-B2-S-6101 |  | Rebar for Tie Beams | 4d | 2026-06-15 A | 2026-06-18 A | DAM3-C-B2-S-5103 | 100% | 2026-07-23 | 2026-07-27 |  |  | Steel Fixer [64 h]; Construction Cost [7263.64] | 7,263.64 | 7,263.64 | 1 | 05 | 01 | 05 |  |  |  | 3 | 1 | 4 | 1 |
| DAM3-C-B2-S-6102 |  | Formwork for Tie Beams | 2d | 2026-06-17 A | 2026-06-21 A | DAM3-C-B2-S-6101 | 100% | 2026-07-28 | 2026-07-29 |  |  | Carperter [32 h]; Construction Cost [1815.91] | 1,815.91 | 1,815.91 | 1 | 05 | 01 | 05 |  |  |  | 3 | 1 | 4 | 1 |
| DAM3-C-B2-S-6103 |  | Pouring Concrete for Tie Beams | 1d | 2026-06-22 A | 2026-06-22 A | DAM3-C-B2-S-6102, DAM3-C-B3-S-6133 | 100% | 2026-08-09 | 2026-08-09 |  |  | Mason [16 h]; Carperter [16 h]; Concrete Mixer [32 h]; Steel Fixer [16 h]; Equipment Operator [16 h]; Construction Cost [9079.54] | 9,079.54 | 9,079.54 | 1 | 05 | 01 | 05 | H1.C.K1.00.RC.F.1110 | PH1-MHR-ST-1030 | 21 | 3 | 1 | 4 | 1 |
| DAM3-C-B2-S-5101 |  | Rebar for column | 5d | 2026-07-22 A | 2026-07-30 A | DAM3-C-B2-S-377 | 100% | 2026-07-22 | 2026-07-27 |  |  | Steel Fixer [112 h]; Construction Cost [20144] | 20,144.05 | 20,144.05 | 1 | 05 | 01 | 05 |  |  |  | 3 | 1 | 4 | 1 |
| DAM3-C-B2-S-5102 |  | Formwork for column | 4d | 2026-08-11 A | 2026-08-18 A | DAM3-C-B2-S-5101 | 100% | 2026-08-17 | 2026-08-20 |  |  | Carperter [64 h]; Construction Cost [5036.01] | 5,036.01 | 5,036.01 | 1 | 05 | 01 | 05 |  |  |  | 3 | 1 | 4 | 1 |
| DAM3-C-B2-S-5103 |  | Pouring Concrete for column | 1d | 2026-08-13 A | 2026-08-22 A | DAM3-C-B2-S-5102 | 100% | 2026-08-22 | 2026-08-22 |  |  | Mason [16 h]; Carperter [16 h]; Concrete Mixer [32 h]; Steel Fixer [16 h]; Equipment Operator [16 h]; Construction Cost [25180.1] | 25,180.06 | 25,180.06 | 1 | 05 | 01 | 05 | H1.C.K1.00.RC.F.1110 | PH1-MHR-ST-1030 | 21 | 3 | 1 | 4 | 1 |
| DAM3-C-B2-S-6113 |  | Rebar for Beams | 4d | 2026-09-17 A | 2026-09-20 A | DAM3-C-B2-S-6103 | 100% | 2026-09-24 | 2026-09-28 |  |  | Steel Fixer [64 h]; Construction Cost [13379.1] | 13,379.11 | 13,379.11 | 1 | 05 | 01 | 05 |  |  |  | 3 | 1 | 4 | 1 |
| DAM3-C-B2-S-6123 |  | Formwork for Beams | 2d | 2026-09-28 A | 2026-10-01 A | DAM3-C-B2-S-6113, DAM3-C-B2-S-6113 FF | 100% | 2026-10-04 | 2026-10-06 |  |  | Carperter [32 h]; Construction Cost [3344.77] | 3,344.77 | 3,344.77 | 1 | 05 | 01 | 05 |  |  |  | 3 | 1 | 4 | 1 |
| DAM3-C-B2-S-6133 |  | Pouring Concrete for Beams | 1d | 2026-10-03 A | 2026-10-04 A | DAM3-C-B2-S-6123, DAM3-C-B2-S-6123 FF | 100% | 2026-10-06 | 2026-10-07 |  |  | Mason [16 h]; Carperter [16 h]; Concrete Mixer [32 h]; Steel Fixer [16 h]; Equipment Operator [16 h]; Construction Cost [16723.9] | 16,723.88 | 16,723.88 | 1 | 05 | 01 | 05 | H1.C.K1.00.RC.F.1110 | PH1-MHR-ST-1030 | 21 | 3 | 1 | 4 | 1 |
|  | 5 | **STRUCTURAL STEEL** |  | 2026-07-12 | 2026-11-26 |  |  |  |  |  |  |  |  |  |  |  |  |  |  |  |  |  |  |  |  |
| DAM3-C-B2-SS-0100 |  | Installation of columns | 3d | 2026-07-12 A | 2026-07-13 A | DAM3-C-B2-S-382, DAM3-C-B3-A-220, DAM3-P-ST-E-210, DAM3-P-ST-E-200 | 100% | 2026-09-21 | 2026-09-24 |  |  | Structural Steel Fixer [80 h]; General Labour [80 h]; Equipment Operator [80 h]; Mobile Crane [24 h]; Construction Cost [217508] | 217,507.55 | 217,507.55 |  | 05 | 02 | 05 |  |  |  |  |  |  |  |
| DAM3-C-B2-SS-0110 |  | Installation of raft and purlins | 5d | 2026-07-12 A | 2026-07-14 A | DAM3-C-B2-SS-0100, DAM3-C-B6-A-950 | 100% | 2026-09-27 | 2026-10-01 |  |  | Structural Steel Fixer [160 h]; General Labour [160 h]; Mobile Crane [56 h]; Equipment Operator [160 h]; Construction Cost [326261] | 326,261.32 | 326,261.32 |  | 05 | 02 | 05 |  |  |  |  |  |  |  |
| DAM3-C-B2-SS-610 |  | Intumescent paint to steel works | 7d | 2026-07-30 A | 2026-08-01 A | DAM3-C-B2-SS-0110, DAM3-C-B5-S-1277, DAM3-P-ST-E-240, DAM3-P-ST-E-230, DAM3-P-ST-M-370 | 100% | 2026-10-12 | 2026-10-19 |  |  | Painter [112 h]; Construction Cost [317760] | 317,759.56 | 317,759.56 | 1 | 05 | 02 | 05 | H1.C.A1.SA.FI.G.0730 |  |  |  |  |  |  |
| DAM3-C-B2-SS-0140 |  | Installation of roof sheet | 5d | 2026-08-06 A | 2026-08-13 A | DAM3-C-B2-A-0120, DAM3-C-B2-SS-610, DAM3-C-B2-S-6133, DAM3-C-B3-SS-1040 | 100% | 2026-10-28 | 2026-11-02 |  |  | Roof sheet worker [160 h]; General Labour [160 h]; Mobile Crane [40 h]; Equipment Operator [160 h]; Construction Cost [217508] | 217,507.55 | 217,507.55 |  | 05 | 02 | 05 |  |  |  |  |  |  |  |
| DAM3-C-B2-SS-620 |  | Steel members for office area | 7d | 2026-11-05 | 2026-11-12 | DAM3-C-B2-SS-610, DAM3-C-B2-SS-0110 |  |  |  | 7d | 0d | Construction Cost [115805]; Structural Steel Fixer [112 h]; Mobile Crane [56 h]; General Labour [112 h]; Equipment Operator [112 h] | 115,805.2 |  | 1 | 05 | 02 | 05 | H1.C.A1.SA.FI.G.0730 |  |  |  |  |  |  |
| DAM3-C-B2-SS-1020 |  | Epoxy paint to steel members at office area | 7d | 2026-11-14 | 2026-11-21 | DAM3-C-B2-SS-620 |  |  |  | 7d | 0d | Painter [112 h]; Construction Cost [23161] | 23,161.04 |  | 1 | 05 | 02 | 05 | H1.C.A1.SA.FI.G.0730 |  |  |  |  |  |  |
| DAM3-C-B2-SS-1030 |  | Steel members for external platform | 7d | 2026-11-14 | 2026-11-21 | DAM3-C-B2-SS-620 |  |  |  | 7d | 0d | Construction Cost [18670.8]; General Labour [112 h]; Mobile Crane [56 h]; Structural Steel Fixer [112 h]; Equipment Operator [112 h] | 18,670.78 |  | 1 | 05 | 02 | 05 | H1.C.A1.SA.FI.G.0730 |  |  |  |  |  |  |
| DAM3-C-B2-SS-0130 |  | Installation of wall sandwich panel | 5d | 2026-11-22 | 2026-11-26 | DAM3-C-B2-A-0150, DAM3-C-B2-SS-1020, DAM3-P-ST-M-380 |  |  |  | 7d | 0d | Sandwich panel worker [112 h]; General Labour [112 h]; Mobile Crane [40 h]; Equipment Operator [112 h]; Construction Cost [326261] | 326,261.32 |  |  | 05 | 02 | 05 |  |  |  |  |  |  |  |
| DAM3-C-B2-SS-1040 |  | Epoxy paint for external platform | 5d | 2026-11-22 | 2026-11-26 | DAM3-C-B2-SS-1030, DAM3-C-B2-SS-1030 FF |  |  |  | 7d | 0d | Painter [80 h]; Construction Cost [3734.16] | 3,734.16 |  | 1 | 05 | 02 | 05 | H1.C.A1.SA.FI.G.0730 |  |  |  |  |  |  |

| ID | WBS | Activity | Duration | Start | Finish | Predecessors | Complete | Remaining | Planned start | Planned finish | Total float | Free float | Resources | Cost | Actual cost | Phasing Code Category | Discipline | Project component code | Zone # | 00 Activity ID |
| --- | --- | --- | --- | --- | --- | --- | --- | --- | --- | --- | --- | --- | --- | --- | --- | --- | --- | --- | --- | --- |
|  | 2 | **ARCHITECTURAL** |  | 2026-08-12 | 2027-02-15 |  |  |  |  |  |  |  |  |  |  |  |  |  |  |  |
|  | 1 | **MASONARY WORKS** |  | 2026-08-22 | 2026-09-27 |  |  |  |  |  |  |  |  |  |  |  |  |  |  |  |
| DAM3-C-B2-A-0120 |  | Block work at factory area | 8d | 2026-08-22 A | 2026-08-25 A | DAM3-C-B2-S-382, DAM3-C-B2-SS-0110, DAM3-C-B6-E-343 | 100% |  | 2026-10-26 | 2026-11-03 |  |  | AAC panel erector [240 h]; General Labour [240 h]; Equipment Operator [240 h]; Mobile Crane [120 h]; Construction Cost [58338.7] | 58,338.72 | 58,338.72 | 05 | 03 | 05 |  |  |
| DAM3-C-B2-A-0150 |  | Block work at office area | 7d | 2026-08-22 A | 2026-09-08 A | DAM3-C-B2-SS-0140 SS, DAM3-C-B2-SS-620 | 100% |  | 2026-11-04 | 2026-11-11 |  |  | AAC panel erector [160 h]; General Labour [160 h]; Mobile Crane [56 h]; Equipment Operator [160 h]; Construction Cost [6179.18] | 6,179.18 | 6,179.18 | 05 | 03 | 05 |  |  |
| DAM3-C-B2-A-170 |  | Block work at toilet area | 7d | 2026-08-22 A | 2026-09-27 A | DAM3-C-B2-A-0150, DAM3-C-B3-S-1017, DAM3-P-ST-M-400 | 100% |  | 2026-11-08 | 2026-11-16 |  |  | Mason [112 h]; Construction Cost [14436.3] | 14,436.31 | 14,436.31 | 05 | 03 | 05 | 1 |  |
|  | 5 | **WALL FINISHES** |  | 2026-10-04 | 2026-12-21 |  |  |  |  |  |  |  |  |  |  |  |  |  |  |  |
| DAM3-C-B2-A-180 |  | Internal Wall Plaster | 15d | 2026-10-04 A | 2026-11-22 | DAM3-C-B2-A-170, DAM3-C-B2-E-183 | 75% | 3.75d | 2026-11-26 | 2026-12-13 | 31.75d | 0d | Mason [240 h]; Construction Cost [48590.2] | 48,590.16 | 36,442.62 | 05 | 03 | 05 | 1 | H1.C.A1.SA.FI.G.0710 |
| DAM3-C-B2-A-230 |  | Paint to Plaster (Primer, Putty & First Coat) | 7d | 2026-12-13 | 2026-12-21 | DAM3-C-B2-A-250 |  |  |  |  | 31.75d | 0d | Painter [112 h]; Construction Cost [44167.3] | 44,167.3 |  | 05 | 03 | 05 | 1 | H1.C.A1.SA.FI.G.0730 |
|  | 2 | **CIELING FINISHES** |  | 2026-12-05 | 2026-12-10 |  |  |  |  |  |  |  |  |  |  |  |  |  |  |  |
| DAM3-C-B2-A-240 |  | Installation of Ceiling Gypsum Board | 5d | 2026-12-05 | 2026-12-10 | DAM3-C-B2-A-220, DAM3-C-B2-S-517 |  |  |  |  | 31.75d | 0d | Carperter [80 h]; Construction Cost [46792.3] | 46,792.3 |  | 05 | 03 | 05 | 1 | H1.C.A1.SA.FI.G.0820 |
|  | 6 | **FLOOR FINISHES** |  | 2026-11-26 | 2027-02-15 |  |  |  |  |  |  |  |  |  |  |  |  |  |  |  |
| DAM3-C-B2-A-220 |  | Tiles for Toilet | 7d | 2026-11-26 | 2026-12-05 | DAM3-C-B2-A-370 |  |  |  |  | 31.75d | 0d | Tile Fixer [112 h]; Construction Cost [46530.7] | 46,530.71 |  | 05 | 03 | 05 | 1 | H1.C.A1.SA.FI.G.0640 |
| DAM3-C-B2-A-250 |  | Tiles for Office Area | 2d | 2026-12-10 | 2026-12-13 | DAM3-C-B2-A-240 |  |  |  |  | 31.75d | 0d | Tile Fixer [32 h]; Construction Cost [26867.3] | 26,867.31 |  | 05 | 03 | 05 |  |  |
| DAM3-C-B2-A-390 |  | Granite strip | 2d | 2026-12-13 | 2026-12-15 | DAM3-C-B2-A-558, DAM3-C-B2-A-250 |  |  |  |  | 32.75d | 0d | Tile Fixer [32 h]; Construction Cost [671.12] | 671.12 |  | 05 | 03 | 05 | 1 | H1.C.A1.SA.FI.G.0640 |
| DAM3-C-B2-A-420 |  | Epoxy paint | 3d | 2027-02-13 | 2027-02-15 | DAM3-C-B2-A-340 |  |  |  |  | 2.5d | 0d | Painter [112 h]; Construction Cost [115420] | 115,419.76 |  | 05 | 03 | 05 |  |  |
|  | 3 | **DOORS & WINDOWS** |  | 2026-11-28 | 2026-12-10 |  |  |  |  |  |  |  |  |  |  |  |  |  |  |  |
| DAM3-C-B2-A-552 |  | Window (CW1) | 5d | 2026-11-28 | 2026-12-02 | DAM3-C-B2-SS-0130, DAM3-C-B2-SS-1040 |  |  |  |  | 7d | 0d | Carperter [112 h]; Construction Cost [94173.2] | 94,173.21 |  | 05 | 03 | 05 |  |  |
| DAM3-C-B2-A-553 |  | Roll up Shutter Door | 1d | 2026-12-03 | 2026-12-03 | DAM3-C-B2-A-552, DAM3-C-B2-S-517, DAM3-C-B3-A-1370 |  |  |  |  | 7d | 0d | Carperter [16 h]; Construction Cost [68619.2] | 68,619.2 |  | 05 | 03 | 05 |  |  |
| DAM3-C-B2-A-200 |  | Supply and install (D5) 1000*2200mm single leaf steel door with door | 1d | 2026-12-05 | 2026-12-05 | DAM3-C-B2-A-553 |  |  |  |  | 7d | 0d | Carperter [16 h]; Construction Cost [16016.2] | 16,016.16 |  | 05 | 03 | 05 |  |  |
| DAM3-C-B2-A-554 |  | Supply and install (D4) 800*2200 mm single leaf aluminum door with door | 1d | 2026-12-06 | 2026-12-06 | DAM3-C-B2-A-200 |  |  |  |  | 7d | 0d | Carperter [16 h]; Construction Cost [22737.8] | 22,737.85 |  | 05 | 03 | 05 |  |  |
| DAM3-C-B2-A-555 |  | Supply and install (D7) 1000*2200 mm single leaf aluminum door with door | 1d | 2026-12-07 | 2026-12-07 | DAM3-C-B2-A-554 |  |  |  |  | 7d | 0d | Carperter [16 h]; Construction Cost [7811.07] | 7,811.07 |  | 05 | 03 | 05 |  |  |
| DAM3-C-B2-A-556 |  | Supply and install (D3) 1000*2200 mm single leaf aluminum door with door | 1d | 2026-12-08 | 2026-12-08 | DAM3-C-B2-A-555 |  |  |  |  | 7d | 0d | Carperter [16 h]; Construction Cost [16016.2] | 16,016.16 |  | 05 | 03 | 05 |  |  |
| DAM3-C-B2-A-557 |  | Supply and install fire rated 45 min (D2) 1200*2200 mm single leaf steel door | 1d | 2026-12-09 | 2026-12-09 | DAM3-C-B2-A-556 |  |  |  |  | 7d | 0d | Carperter [16 h]; Construction Cost [16711.5] | 16,711.52 |  | 05 | 03 | 05 |  |  |
| DAM3-C-B2-A-558 |  | Skylight fixtures installation | 1d | 2026-12-10 | 2026-12-10 | DAM3-C-B2-A-557 |  |  |  |  | 7d | 0d | Carperter [16 h]; Construction Cost [6489.89] | 6,489.89 |  | 05 | 03 | 05 |  |  |

| ID | WBS | Activity | Duration | Start | Finish | Predecessors | Complete | Planned start | Planned finish | Total float | Free float | Resources | Cost | Actual cost | Phasing Code Category | Discipline | Project component code | Ordinal Start | Ordinal Finish | 00 Activity ID | Ordinal Duration | Zone # |
| --- | --- | --- | --- | --- | --- | --- | --- | --- | --- | --- | --- | --- | --- | --- | --- | --- | --- | --- | --- | --- | --- | --- |
|  | 4 | **WATER PROOFING WORKS** |  | 2026-11-22 | 2026-11-26 |  |  |  |  |  |  |  |  |  |  |  |  |  |  |  |  |  |
| DAM3-C-B2-A-370 |  | Waterproofing membrane for toilets | 4d | 2026-11-22 | 2026-11-26 | DAM3-C-B2-M-200, DAM3-C-B2-A-180 |  |  |  | 31.75d | 0d | General Labour [64 h]; Construction Cost [4879.02] | 4,879.02 |  | 05 | 03 | 05 |  |  |  |  |  |
|  | 7 | **METAL WORKS** |  | 2026-08-12 | 2026-12-28 |  |  |  |  |  |  |  |  |  |  |  |  |  |  |  |  |  |
| DAM3-C-B2-A-300 |  | Galvanised Steel Gratings | 2d | 2026-08-12 A | 2026-08-12 A | DAM3-C-B2-A-292 | 100% | 2027-01-18 | 2027-01-19 |  |  | Steel Fixer [32 h]; General Labour [32 h]; Construction Cost [6455.16] | 6,455.16 | 6,455.16 | 05 | 03 | 05 |  |  |  |  |  |
| DAM3-C-B2-A-290 |  | Steel Ladder | 2d | 2026-12-15 | 2026-12-17 | DAM3-C-B2-A-390 |  |  |  | 32.75d | 0d | Steel Fixer [32 h]; General Labour [32 h]; Construction Cost [9839.16] | 9,839.16 |  | 05 | 03 | 05 |  |  |  |  |  |
| DAM3-C-B2-A-291 |  | Steel railing works | 4d | 2026-12-17 | 2026-12-22 | DAM3-C-B2-A-290 |  |  |  | 32.75d | 0d | Steel Fixer [64 h]; General Labour [64 h]; Construction Cost [1533.98] | 1,533.98 |  | 05 | 03 | 05 |  |  |  |  |  |
| DAM3-C-B2-A-292 |  | Aluminium composite panel | 5d | 2026-12-22 | 2026-12-28 | DAM3-C-B2-A-291 |  |  |  | 32.75d | 0d | Steel Fixer [80 h]; General Labour [80 h]; Construction Cost [175889] | 175,888.76 |  | 05 | 03 | 05 |  |  |  |  |  |
|  | 8 | **SPECIALTIES** |  | 2026-12-28 | 2027-02-11 |  |  |  |  |  |  |  |  |  |  |  |  |  |  |  |  |  |
| DAM3-C-B2-A-320 |  | Installation of fittings | 5d | 2026-12-28 | 2027-01-03 | DAM3-C-B2-A-300 |  |  |  | 32.75d | 0d | Plumber [80 h]; Construction Cost [22981.3] | 22,981.27 |  | 05 | 03 | 05 |  |  |  |  |  |
| DAM3-C-B2-A-570 |  | Identification sign; ID01 & ID02 | 3d | 2027-01-03 | 2027-01-06 | DAM3-C-B2-A-320 |  |  |  | 32.75d | 30.25d | Mason [48 h]; Construction Cost [9630.56] | 9,630.56 |  | 05 | 03 | 05 |  |  |  |  |  |
| DAM3-C-B2-A-340 |  | Furniture Installation | 1d | 2027-02-11 | 2027-02-11 | DAM3-C-B2-A-570, DAM3-C-B3-A-1260 |  |  |  | 2.5d | 0d | General Labour [16 h]; Mason [16 h]; Construction Cost [12468.8] | 12,468.83 |  | 05 | 03 | 05 |  |  |  |  |  |
|  | 3 | **MECHANICAL** |  | 2026-07-23 | 2027-01-10 |  |  |  |  |  |  |  |  |  |  |  |  |  |  |  |  |  |
|  | 1 | **HVAC** |  | 2026-12-21 | 2027-01-06 |  |  |  |  |  |  |  |  |  |  |  |  |  |  |  |  |  |
|  | 1 | **FIRST STAGE** |  | 2026-12-28 | 2027-01-02 |  |  |  |  |  |  |  |  |  |  |  |  |  |  |  |  |  |
| DAM3-C-B2-M-140 |  | Installation of HVAC Ducts | 2d | 2026-12-28 | 2026-12-30 | DAM3-C-B2-M-160 |  |  |  | 31.75d | 0d | Ductman [32 h]; Construction Cost [149489] | 149,489.33 |  | 05 | 04 | 05 | 0 | 0 | H1.C.A1.0A.MH.G.1040 | 0 | 1 |
| DAM3-C-B2-M-170 |  | Installation of Duct insulation | 2d | 2026-12-30 | 2027-01-02 | DAM3-C-B2-M-140 |  |  |  | 31.75d | 0d | Ductman [32 h]; Construction Cost [21205.4] | 21,205.4 |  | 05 | 04 | 05 |  |  |  |  |  |
|  | 2 | **SECOND STAGE** |  | 2026-12-21 | 2027-01-06 |  |  |  |  |  |  |  |  |  |  |  |  |  |  |  |  |  |
| DAM3-C-B2-M-130 |  | Installation of Exhaust Fans | 2d | 2026-12-21 | 2026-12-23 | DAM3-C-B2-A-230 |  |  |  | 31.75d | 0d | AC Technician [32 h]; Construction Cost [7938.56] | 7,938.56 |  | 05 | 04 | 05 | 0 | 0 | H1.C.A1.0A.MH.X.4050 | 0 | 1 |
| DAM3-C-B2-M-160 |  | Installation of Wall Propeller Type Exhaust Fan | 4d | 2026-12-23 | 2026-12-28 | DAM3-C-B2-M-130 |  |  |  | 31.75d | 0d | AC Technician [64 h]; Construction Cost [46831.6] | 46,831.64 |  | 05 | 04 | 05 |  |  |  |  |  |
| DAM3-C-B2-M-339 |  | Installation of Diffuser | 2d | 2027-01-02 | 2027-01-04 | DAM3-C-B2-M-170 |  |  |  | 31.75d | 0d | Ductman [32 h]; Construction Cost [2144] | 2,144 |  | 05 | 04 | 05 | 0 | 0 | H1.C.A1.0A.MH.G.3010 | 0 | 1 |
| DAM3-C-B2-M-340 |  | Supply, install, test and commission door grilles & exhaust louvers | 2d | 2027-01-04 | 2027-01-06 | DAM3-C-B2-M-339 |  |  |  | 31.75d | 0d | Ductman [32 h]; Construction Cost [5574.4] | 5,574.4 |  | 05 | 04 | 05 | 0 | 0 | H1.C.A1.0A.MH.G.3010 | 0 | 1 |
|  | 2 | **FIRE FIGHTING SYSTEM** |  | 2026-09-10 | 2027-01-10 |  |  |  |  |  |  |  |  |  |  |  |  |  |  |  |  |  |
|  | 1 | **FIRST STAGE** |  | 2026-09-10 | 2026-09-21 |  |  |  |  |  |  |  |  |  |  |  |  |  |  |  |  |  |
| DAM3-C-B2-M-300 |  | Installation of Fire Fighting Pipes (Seamless Black Steel) | 7d | 2026-09-10 A | 2026-09-21 A | DAM3-C-B2-A-230 | 100% | 2026-12-20 | 2026-12-27 |  |  | Pipe Fitter [112 h]; Construction Cost [72394.8] | 72,394.75 | 72,394.75 | 05 | 04 | 05 | 0 | 0 | H1.C.A1.0A.MF.G.1010 | 0 | 1 |
| DAM3-C-B2-M-310 |  | Installation of Fire Fighting Valve | 5d | 2026-09-10 A | 2026-09-21 A | DAM3-C-B2-M-300 | 100% | 2026-12-28 | 2027-01-02 |  |  | Pipe Fitter [80 h]; Construction Cost [12199.4] | 12,199.4 | 12,199.4 | 05 | 04 | 05 | 0 | 0 | H1.C.A1.0A.MF.G.2010 | 0 | 1 |

| ID | WBS | Activity | Duration | Start | Finish | Predecessors | Complete | Remaining | Planned start | Planned finish | Total float | Free float | Resources | Cost | Actual cost | Ordinal Start | Ordinal Finish | 00 Activity ID | Ordinal Duration | Zone # | Phasing Code Category | Discipline | Project component code |
| --- | --- | --- | --- | --- | --- | --- | --- | --- | --- | --- | --- | --- | --- | --- | --- | --- | --- | --- | --- | --- | --- | --- | --- |
|  | 2 | **SECOND STAGE** |  | 2026-12-21 | 2027-01-10 |  |  |  |  |  |  |  |  |  |  |  |  |  |  |  |  |  |  |
| DAM3-C-B2-M-320 |  | Installation of Fire Hose Cabinet | 3d | 2026-12-21 | 2026-12-24 | DAM3-C-B2-M-310 |  |  |  |  | 45.75d | 36.15d | Pipe Fitter [48 h]; Construction Cost [15158.6] | 15,158.56 |  | 0 | 0 | H1.C.A1.0A.MF.G.3010 | 0 | 1 | 05 | 04 | 05 |
| DAM3-C-B2-M-370 |  | Supply, install, test and commission Fire Department Connection(FDC) | 3d | 2027-01-06 | 2027-01-10 | DAM3-C-B2-M-340 |  |  |  |  | 31.75d | 0d | Pipe Fitter [48 h]; Construction Cost [2706.06] | 2,706.06 |  | 0 | 0 | H1.C.A1.0A.MF.G.3010 | 0 | 1 | 05 | 04 | 05 |
|  | 3 | **SEWER AND DRAINAGE SYSTEM** |  | 2026-07-23 | 2026-12-23 |  |  |  |  |  |  |  |  |  |  |  |  |  |  |  |  |  |  |
|  | 1 | **FIRST STAGE** |  | 2026-07-23 | 2026-12-07 |  |  |  |  |  |  |  |  |  |  |  |  |  |  |  |  |  |  |
| DAM3-C-B2-M-200 |  | Installation of Sanitary Waste / Drainage Pipes | 4d | 2026-07-23 A | 2026-07-27 A | DAM3-C-B2-S-347 | 100% |  | 2026-07-25 | 2026-07-28 |  |  | Plumber [64 h]; Construction Cost [18585.1] | 18,585.14 | 18,585.14 | 0 | 0 | H1.C.K1.00.MP.G.1020 | 0 | 1 | 05 | 04 | 05 |
| DAM3-C-B2-M-380 |  | Installation of Trench drain | 5d | 2026-08-03 A | 2026-08-04 A | DAM3-C-B2-M-220 | 100% |  | 2026-12-14 | 2026-12-20 |  |  | Plumber [80 h]; Construction Cost [11508.8] | 11,508.8 | 11,508.8 |  |  |  |  |  | 05 | 04 | 05 |
| DAM3-C-B2-M-220 |  | Installation of Floor Drain | 2d | 2026-12-05 | 2026-12-07 | DAM3-C-B2-M-200, DAM3-C-B2-A-220 |  |  |  |  | 38.65d | 0d | Plumber [32 h]; Construction Cost [11056] | 11,055.96 |  |  |  |  |  | 1 | 05 | 04 | 05 |
|  | 2 | **SECOND STAGE** |  | 2026-12-07 | 2026-12-23 |  |  |  |  |  |  |  |  |  |  |  |  |  |  |  |  |  |  |
| DAM3-C-B2-M-180 |  | Installation of Electric Water Heater | 2d | 2026-12-07 | 2026-12-09 | DAM3-C-B2-M-380 |  |  |  |  | 38.65d | 0d | Plumber [32 h]; Construction Cost [1819.51] | 1,819.51 |  | 0 | 0 | H1.C.K1.00.MP.G.1030 | 0 | 1 | 05 | 04 | 05 |
| DAM3-C-B2-M-190 |  | Installation of Sanitary Fixture and Accessories | 4d | 2026-12-09 | 2026-12-14 | DAM3-C-B2-M-180 |  |  |  |  | 38.65d | 0d | Plumber [64 h]; Construction Cost [19921.7] | 19,921.72 |  | 0 | 0 | H1.C.K1.00.MP.G.2040 | 0 | 1 | 05 | 04 | 05 |
| DAM3-C-B2-M-210 |  | Installation of Lavotary /Wash Basin | 2d | 2026-12-14 | 2026-12-16 | DAM3-C-B2-M-180, DAM3-C-B2-M-190 |  |  |  |  | 38.65d | 0d | Plumber [32 h]; Construction Cost [21416.7] | 21,416.68 |  |  |  |  |  | 1 | 05 | 04 | 05 |
| DAM3-C-B2-M-270 |  | Installation of Bib Tap | 2d | 2026-12-16 | 2026-12-19 | DAM3-C-B2-M-190, DAM3-C-B2-M-210 |  |  |  |  | 38.65d | 0d | Plumber [32 h]; Construction Cost [1900.66] | 1,900.66 |  |  |  |  |  |  | 05 | 04 | 05 |
| DAM3-C-B2-M-428 |  | Installation of Water Tap | 2d | 2026-12-19 | 2026-12-21 | DAM3-C-B2-M-210, DAM3-C-B2-M-270 |  |  |  |  | 38.65d | 0d | Plumber [32 h]; Construction Cost [2874.14] | 2,874.14 |  |  |  |  |  |  | 05 | 04 | 05 |
| DAM3-C-B2-M-429 |  | Installation of Roof Vent Cap | 2d | 2026-12-21 | 2026-12-23 | DAM3-C-B2-M-428 |  |  |  |  | 38.65d | 14.25d | Pipe Fitter [32 h]; Construction Cost [927.12] | 927.12 |  |  |  |  |  |  | 05 | 04 | 05 |
|  | 4 | **WATER SUPPLY SYSTEM** |  | 2026-10-01 | 2026-12-27 |  |  |  |  |  |  |  |  |  |  |  |  |  |  |  |  |  |  |
|  | 1 | **FIRST STAGE** |  | 2026-10-01 | 2026-10-04 |  |  |  |  |  |  |  |  |  |  |  |  |  |  |  |  |  |  |
| DAM3-C-B2-M-280 |  | Installation of Water Supply Valve | 2d | 2026-10-01 A | 2026-10-04 A | DAM3-C-B2-M-290 | 100% |  | 2027-01-10 | 2027-01-12 |  |  | Plumber [32 h]; Construction Cost [18274.3] | 18,274.27 | 18,274.27 | 0 | 0 | H1.C.K1.00.MP.G.2010 | 0 | 1 | 05 | 04 | 05 |
| DAM3-C-B2-M-290 |  | Installation of Water Supply Pipes | 4d | 2026-10-01 A | 2026-10-04 A | DAM3-C-B2-A-230 | 100% |  | 2027-01-05 | 2027-01-10 |  |  | Plumber [64 h]; Construction Cost [23318.4] | 23,318.41 | 23,318.41 | 0 | 0 | H1.C.K1.00.MP.G.1010 | 0 | 1 | 05 | 04 | 05 |
|  | 2 | **SECOND STAGE** |  | 2026-12-21 | 2026-12-27 |  |  |  |  |  |  |  |  |  |  |  |  |  |  |  |  |  |  |
| DAM3-C-B2-M-330 |  | Capped connection | 5d | 2026-12-21 | 2026-12-27 | DAM3-C-B2-M-280 |  |  |  |  | 41.65d | 30.65d | Plumber [80 h]; Construction Cost [278.13] | 278.13 |  |  |  |  |  |  | 05 | 04 | 05 |
|  | 4 | **ELECTRICAL** |  | 2026-06-17 | 2027-01-11 |  |  |  |  |  |  |  |  |  |  |  |  |  |  |  |  |  |  |
|  | 1 | **FIRST STAGE** |  | 2026-06-17 | 2026-12-30 |  |  |  |  |  |  |  |  |  |  |  |  |  |  |  |  |  |  |
| DAM3-C-B2-E-143 |  | Installation of Conduits and wiring outlets - Fire Alarm System | 4d | 2026-06-17 A | 2026-11-15 | DAM3-C-B2-A-170 | 50% | 2d | 2026-12-19 | 2026-12-22 | 20.6d | 0d | Electrician [64 h]; Construction Cost [1768.31] | 1,768.31 | 884.15 |  |  | H1.C.K1.00.EL.G.1020 |  | 1 | 05 | 05 | 05 |
| DAM3-C-B2-E-113 |  | Installation of Earthing and Grounding | 5d | 2026-06-18 A | 2026-12-30 | DAM3-C-B2-E-223 | 90% | 0.5d | 2027-01-25 | 2027-01-30 | 7d | 0d | Electrician [80 h]; Construction Cost [19646.5] | 19,646.47 | 17,681.82 |  |  | H1.C.K1.00.EM.G.2040 |  | 1 | 05 | 05 | 05 |
| DAM3-C-B2-E-183 |  | Installation of Sleeves & Power outlet | 8d | 2026-06-18 A | 2026-11-17 | DAM3-C-B2-A-170 | 50% | 4d | 2026-12-19 | 2026-12-27 | 31.75d | 0d | Electrician [128 h]; Construction Cost [2920.45] | 2,920.45 | 1,460.23 |  |  |  |  | 1 | 05 | 05 | 05 |
| DAM3-C-B2-E-163 |  | Installation of Conduites for Lighting Fixture | 4d | 2026-09-29 A | 2026-11-25 | DAM3-C-B2-E-133 | 90% | 0.4d | 2026-12-07 | 2026-12-10 | 20.6d | 13.6d | Electrician [64 h]; Construction Cost [8462.97] | 8,462.97 | 7,616.67 |  |  | H1.C.K1.00.EM.G.2030 |  | 1 | 05 | 05 | 05 |
| DAM3-C-B2-E-233 |  | Installation of Wires | 4d | 2026-12-12 | 2026-12-15 | DAM3-C-B2-E-163, DAM3-C-B2-A-558 |  |  |  |  | 7d | 0d | Electrician [64 h]; Construction Cost [16925.9] | 16,925.94 |  |  |  |  |  |  | 05 | 05 | 05 |
| DAM3-C-B2-E-223 |  | Installation of LV Cables | 4d | 2026-12-26 | 2026-12-29 | DAM3-C-B2-E-213 |  |  |  |  | 7d | 0d | Electrician [64 h]; Construction Cost [36390] | 36,389.98 |  |  |  |  |  |  | 05 | 05 | 05 |

| ID | WBS | Activity | Duration | Start | Finish | Predecessors | Complete | Planned start | Planned finish | Total float | Free float | Resources | Cost | Actual cost | 00 Activity ID | Zone # | Phasing Code Category | Discipline | Project component code | AMH Tender Act. ID | Tender Original Duration |
| --- | --- | --- | --- | --- | --- | --- | --- | --- | --- | --- | --- | --- | --- | --- | --- | --- | --- | --- | --- | --- | --- |
|  | 2 | **SECOND STAGE** |  | 2026-11-16 | 2027-01-11 |  |  |  |  |  |  |  |  |  |  |  |  |  |  |  |  |
| DAM3-C-B2-E-123 |  | Installation of Fire Alarm Control Panel | 4d | 2026-11-16 | 2026-11-19 | DAM3-C-B2-E-143 |  |  |  | 20.6d | 0d | Electrician [64 h]; Construction Cost [19451.4] | 19,451.37 |  | H1.C.K1.00.EL.X.4120 | 1 | 05 | 05 | 05 |  |  |
| DAM3-C-B2-E-133 |  | Installation of Fire Detectors & Accessories | 4d | 2026-11-21 | 2026-11-24 | DAM3-C-B2-E-123 |  |  |  | 20.6d | 0d | Electrician [64 h]; Construction Cost [56740.4] | 56,740.37 |  | H1.C.K1.00.EL.G.3020 | 1 | 05 | 05 | 05 |  |  |
| DAM3-C-B2-E-153 |  | Installation of Lighting fixtures | 4d | 2026-12-16 | 2026-12-20 | DAM3-C-B2-E-233 |  |  |  | 26.4d | 2d | Electrician [64 h]; Construction Cost [76166.7] | 76,166.74 |  | H1.C.K1.00.EM.G.3010 | 1 | 05 | 05 | 05 |  |  |
| DAM3-C-B2-E-193 |  | Installation of Main Distribution Board | 2d | 2026-12-16 | 2026-12-17 | DAM3-C-B2-E-233 |  |  |  | 7d | 0d | Electrician [32 h]; Construction Cost [32472.7] | 32,472.73 |  | H1.C.K1.00.EM.G.2020 | 1 | 05 | 05 | 05 |  |  |
| DAM3-C-B2-E-410 |  | Installation of CCTV System | 6d | 2026-12-16 | 2026-12-22 | DAM3-C-B2-E-233 |  |  |  | 24.4d | 0d | Plumber [112 h]; Construction Cost [76349.2] | 76,349.24 |  |  |  | 05 | 05 | 05 |  |  |
| DAM3-C-B2-E-243 |  | Installation of LP-1 Panel | 2d | 2026-12-19 | 2026-12-20 | DAM3-C-B2-E-193 |  |  |  | 7d | 0d | Electrician [32 h]; Construction Cost [18403.5] | 18,403.54 |  | H1.C.K1.00.EM.G.2020 | 1 | 05 | 05 | 05 |  |  |
| DAM3-C-B2-E-253 |  | Installation of PP-AC panel | 2d | 2026-12-21 | 2026-12-22 | DAM3-C-B2-E-243 |  |  |  | 7d | 0d | Electrician [32 h]; Construction Cost [21648.5] | 21,648.48 |  | H1.C.K1.00.EM.G.2020 | 1 | 05 | 05 | 05 |  |  |
| DAM3-C-B2-E-173 |  | Installation of Wiring Devices | 4d | 2026-12-21 | 2026-12-26 | DAM3-C-B2-E-183, DAM3-C-B2-A-230 |  |  |  | 32.65d | 0d | Electrician [64 h]; Construction Cost [19435.1] | 19,435.09 |  | H1.C.K1.00.EM.G.3020 | 1 | 05 | 05 | 05 |  |  |
| DAM3-C-B2-E-213 |  | Installation of Telephone Cabinet | 2d | 2026-12-23 | 2026-12-24 | DAM3-C-B2-E-253 |  |  |  | 7d | 0d | Electrician [32 h]; Construction Cost [26991.1] | 26,991.08 |  |  | 1 | 05 | 05 | 05 |  |  |
| DAM3-C-B2-E-273 |  | Installation of Access Control System | 5d | 2026-12-23 | 2026-12-28 | DAM3-C-B2-E-410, DAM3-C-B2-E-153 |  |  |  | 24.4d | 0d | Electrician [80 h]; Construction Cost [27616.9] | 27,616.86 |  | H1.C.K1.00.EM.G.2040 | 1 | 05 | 05 | 05 |  |  |
| DAM3-C-B2-E-203 |  | Installation of Disconnect Switches | 2d | 2026-12-26 | 2026-12-28 | DAM3-C-B2-E-173 |  |  |  | 32.65d | 8.25d | Electrician [32 h]; Construction Cost [30236] | 30,235.95 |  |  |  | 05 | 05 | 05 |  |  |
| DAM3-C-B2-E-283 |  | Monitor Modules for Fire Alarm | 2d | 2026-12-29 | 2026-12-30 | DAM3-C-B2-E-273, DAM3-C-B2-E-213 |  |  |  | 24.4d | 0d | Electrician [32 h]; Construction Cost [3882.38] | 3,882.38 |  | H1.C.K1.00.EM.G.2040 | 1 | 05 | 05 | 05 |  |  |
| DAM3-C-B2-E-420 |  | Installation of Solar power plant | 10d | 2026-12-30 | 2027-01-11 | DAM3-C-B3-E-1040, DAM3-C-B2-E-113 |  |  |  | 7d | 0d | Plumber [112 h]; Construction Cost [253269] | 253,268.71 |  |  |  | 05 | 05 | 05 |  |  |
| DAM3-C-B2-E-293 |  | Line Isolator Modules for Fire Alarm | 2d | 2026-12-31 | 2027-01-02 | DAM3-C-B2-E-283 |  |  |  | 24.4d | 0d | Electrician [32 h]; Construction Cost [185.4] | 185.4 |  | H1.C.K1.00.EM.G.2040 | 1 | 05 | 05 | 05 |  |  |
| DAM3-C-B2-E-303 |  | Firewarning flash light with sounder; wall mounted, Weather proof | 2d | 2027-01-03 | 2027-01-04 | DAM3-C-B2-E-293 |  |  |  | 24.4d | 0d | Electrician [32 h]; Construction Cost [3082.69] | 3,082.69 |  | H1.C.K1.00.EM.G.2040 | 1 | 05 | 05 | 05 |  |  |
|  | 1 | **BLOCK B1** |  | 2026-03-17 | 2027-02-17 |  |  |  |  |  |  |  |  |  |  |  |  |  |  |  |  |
|  | 1 | **STRUCTURAL** |  | 2026-03-17 | 2026-11-21 |  |  |  |  |  |  |  |  |  |  |  |  |  |  |  |  |
|  | 1 | **FOOTING** |  | 2026-03-17 | 2026-05-07 |  |  |  |  |  |  |  |  |  |  |  |  |  |  |  |  |
| DAM3-C-B1-S-150 |  | Excavation for footings | 4d | 2026-03-17 A | 2026-03-24 A | DAM3-C-B2-S-150 | 100% | 2026-04-05 | 2026-04-09 |  |  | General Labour [112 h]; Equipment Operator [112 h]; Truck [64 h]; Excavator [64 h]; Mini Roller Compactor [64 h]; Construction Cost [89859.6] | 89,859.61 | 89,859.61 | H1.C.K1.00.SW.F.1010 | 1 | 05 | 01 | 06 | PH1-MHR-ST-640 | 12 |
| DAM3-C-B1-S-6243 |  | Soil replacement - rock fill | 4d | 2026-03-17 A | 2026-03-24 A | DAM3-C-B1-S-150 | 100% | 2026-03-30 | 2026-04-04 |  |  | General Labour [256 h]; Truck [64 h]; Mini Roller Compactor [64 h]; Equipment Operator [256 h]; Wheel Loader [64 h]; Construction Cost [179062] | 179,061.91 | 179,061.91 | H1.C.K1.00.SW.F.1060 | 1 | 05 | 01 | 06 | PH1-MHR-ST-645 | 15 |
| DAM3-C-B1-S-6253 |  | Engineering fill | 4d | 2026-04-07 A | 2026-04-13 A | DAM3-C-B1-S-6243, DAM3-C-B1-S-6243 FF | 100% | 2026-04-14 | 2026-04-18 |  |  | General Labour [256 h]; Truck [64 h]; Mini Roller Compactor [64 h]; Equipment Operator [256 h]; Wheel Loader [64 h]; Construction Cost [46046.2] | 46,046.19 | 46,046.19 | H1.C.K1.00.SW.F.1060 | 1 | 05 | 01 | 06 | PH1-MHR-ST-645 | 15 |
| DAM3-C-B1-S-101 |  | Anti Termite Below Footings | 1d | 2026-04-25 A | 2026-04-25 A | DAM3-C-B1-S-6253 | 100% | 2026-04-28 | 2026-04-28 |  |  | Mason [16 h]; Construction Cost [11905.5] | 11,905.55 | 11,905.55 | H1.C.K1.00.SW.F.1030 | 1 | 05 | 01 | 06 | PH1-MHR-ST-1020 | 10 |
| DAM3-C-B1-S-102 |  | Vapour Barrier for Footings | 1d | 2026-04-25 A | 2026-04-25 A | DAM3-C-B1-S-101 | 100% | 2026-04-29 | 2026-04-29 |  |  | General Labour [16 h]; Construction Cost [7940.1] | 7,940.1 | 7,940.1 | H1.C.K1.00.SW.F.1040 | 1 | 05 | 01 | 06 | PH1-MHR-ST-1080 | 15 |
| DAM3-C-B1-S-103 |  | Lean Concrete Below Footings | 2d | 2026-04-25 A | 2026-04-25 A | DAM3-C-B1-S-102, DAM3-E-MT-EX-2050 | 100% | 2026-07-02 | 2026-07-05 |  |  | Mason [32 h]; Construction Cost [8229.34] | 8,229.34 | 8,229.34 | H1.C.K1.00.SW.F.1030 | 1 | 05 | 01 | 06 | PH1-MHR-ST-1020 | 10 |
| DAM3-C-B1-S-104 |  | Rebar for Footings | 4d | 2026-05-02 A | 2026-05-05 A | DAM3-C-B1-S-103, DAM3-E-SA-EX-860, DAM3-E-SA-EX-870, DAM3-E-SA-EX-880, DAM3-E-SA-EX-890, DAM3-E-SA-EX-900, DAM3-E-SA-EX-910, DAM3-E-SA-EX-920, DAM3-E-SA-E-990, DAM3-E-SA-E-1000, DAM3-E-SA-E-1010, DAM3-E-SA-E-1020, DAM3-E-SA-E-1030, DAM3-E-SA-E-1040, DAM3-E-SA-E-1050, DAM3-E-SA-E-1060, DAM3-E-SA-E-1070, DAM3-E-SA-E-1080, DAM3-E-SA-E-1090, DAM3-E-SA-E-1100, DAM3-E-SA-M-660, DAM3-E-SA-M-670, DAM3-E-SA-M-680, DAM3-E-SA-M-690, DAM3-E-SA-M-700, DAM3-E-SA-M-710, DAM3-E-SA-M-720, DAM3-E-SA-M-730, DAM3-E-SA-M-740, DAM3-E-SA-M-750, DAM3-E-SA-M-760, DAM3-E-SA-M-770 | 100% | 2026-07-11 | 2026-07-15 |  |  | Steel Fixer [64 h]; Construction Cost [101845] | 101,844.98 | 101,844.98 |  | 1 | 05 | 01 | 06 |  |  |
| DAM3-C-B1-S-105 |  | Formwork for Footings | 4d | 2026-05-05 A | 2026-05-06 A | DAM3-C-B1-S-104 | 100% | 2026-07-15 | 2026-07-20 |  |  | Carperter [64 h]; Construction Cost [25461.2] | 25,461.25 | 25,461.25 |  | 1 | 05 | 01 | 06 |  |  |
| DAM3-C-B1-S-106 |  | Pouring Concrete for Footings | 1d | 2026-05-07 A | 2026-05-07 A | DAM3-C-B1-S-105, DAM3-E-SA-M-780, DAM3-E-SA-M-790, DAM3-E-SA-M-800, DAM3-E-MT-ENV-2060 | 100% | 2026-07-28 | 2026-07-29 |  |  | Carperter [16 h]; Mason [16 h]; Steel Fixer [16 h]; Concrete Mixer [8 h]; Equipment Operator [16 h]; Construction Cost [127306] | 127,306.23 | 127,306.23 | H1.C.K1.00.RC.F.1010 | 1 | 05 | 01 | 06 | PH1-MHR-ST-1030 | 21 |

| ID | WBS | Activity | Duration | Start | Finish | Predecessors | Complete | Planned start | Planned finish | Total float | Free float | Resources | Cost | Actual cost | Zone # | Phasing Code Category | Discipline | Project component code | 00 Activity ID | AMH Tender Act. ID | Tender Original Duration | project summary-4 | PS (su & rbf)-4 | New code for weekly report-4 | New discipline code-4 |
| --- | --- | --- | --- | --- | --- | --- | --- | --- | --- | --- | --- | --- | --- | --- | --- | --- | --- | --- | --- | --- | --- | --- | --- | --- | --- |
|  | 2 | **COLUMN NECK** |  | 2026-05-05 | 2026-06-01 |  |  |  |  |  |  |  |  |  |  |  |  |  |  |  |  |  |  |  |  |
| DAM3-C-B1-S-257 |  | Rebar for column neck | 4d | 2026-05-05 A | 2026-05-06 A | DAM3-C-B1-S-106 | 100% | 2026-07-28 | 2026-08-02 |  |  | Steel Fixer [64 h]; Construction Cost [14919.2] | 14,919.19 | 14,919.19 | 1 | 05 | 01 | 06 |  |  |  |  |  |  |  |
| DAM3-C-B1-S-267 |  | Formwork for column neck | 2d | 2026-05-11 A | 2026-05-12 A | DAM3-C-B1-S-257 | 100% | 2026-08-02 | 2026-08-04 |  |  | Carperter [32 h]; Construction Cost [9946.13] | 9,946.13 | 9,946.13 | 1 | 05 | 01 | 06 |  |  |  |  |  |  |  |
| DAM3-C-B1-S-297 |  | Pouring Concrete for column neck | 1d | 2026-05-13 A | 2026-05-13 A | DAM3-C-B1-S-267 | 100% | 2026-08-03 | 2026-08-04 |  |  | Mason [16 h]; Carperter [16 h]; Concrete Mixer [8 h]; Steel Fixer [16 h]; Equipment Operator [16 h]; Construction Cost [24865.3] | 24,865.31 | 24,865.31 | 1 | 05 | 01 | 06 | H1.C.K1.00.RC.F.1110 | PH1-MHR-ST-1030 | 21 |  |  |  |  |
| DAM3-C-B1-S-307 |  | Damp proof /Bitumin paint on Footings & column neck | 2d | 2026-05-16 A | 2026-05-17 A | DAM3-C-B1-S-297 | 100% | 2026-07-23 | 2026-07-26 |  |  | Painter [32 h]; Construction Cost [24777.7] | 24,777.73 | 24,777.73 | 1 | 05 | 01 | 06 | H1.C.K1.00.SW.F.1050 | PH1-MHR-ST-1080 | 15 |  |  |  |  |
| DAM3-C-B1-S-367 |  | Backfilling / Compaction up to Bottom of Grade Beams | 7d | 2026-05-21 A | 2026-06-01 A | DAM3-C-B1-S-307, DAM3-E-SA-E-1110, DAM3-E-SA-E-1120, DAM3-E-SA-E-1130, DAM3-E-SA-E-1140, DAM3-E-SA-E-1150, DAM3-E-SA-E-1160, DAM3-E-SA-E-1170, DAM3-E-SA-E-1180 | 100% | 2026-07-26 | 2026-08-03 |  |  | General Labour [256 h]; Truck [128 h]; Mini Roller Compactor [128 h]; Equipment Operator [256 h]; Wheel Loader [128 h]; Construction Cost [46046.2] | 46,046.19 | 46,046.19 | 1 | 05 | 01 | 06 | H1.C.K1.00.SW.F.1060 | PH1-MHR-ST-645 | 15 |  |  |  |  |
|  | 3 | **GRADE BEAM** |  | 2026-06-06 | 2026-06-25 |  |  |  |  |  |  |  |  |  |  |  |  |  |  |  |  |  |  |  |  |
| DAM3-C-B1-S-337 |  | Vapour barrier for Grade Beams | 2d | 2026-06-06 A | 2026-06-06 A | DAM3-C-B1-S-527 | 100% | 2026-07-28 | 2026-07-30 |  |  | General Labour [32 h]; Construction Cost [5293.4] | 5,293.4 | 5,293.4 | 1 | 05 | 01 | 06 | H1.C.K1.00.SW.F.1040 | PH1-MHR-ST-1080 | 15 |  |  |  |  |
| DAM3-C-B1-S-338 |  | Lean Concrete Below Grade Beams | 2d | 2026-06-06 A | 2026-06-06 A | DAM3-C-B1-S-337 | 100% | 2026-07-30 | 2026-08-02 |  |  | Mason [32 h]; Construction Cost [4431.19] | 4,431.19 | 4,431.19 | 1 | 05 | 01 | 06 | H1.C.K1.00.SW.F.1130 | PH1-MHR-ST-1020 | 10 |  |  |  |  |
| DAM3-C-B1-S-527 |  | Anti Termite Below Grade Beams | 1d | 2026-06-06 A | 2026-06-06 A | DAM3-C-B1-S-367, DAM3-E-SA-EX-1050 | 100% | 2026-07-27 | 2026-07-28 |  |  | Mason [16 h]; Construction Cost [11905.5] | 11,905.55 | 11,905.55 | 1 | 05 | 01 | 06 | H1.C.K1.00.SW.F.1030 | PH1-MHR-ST-1020 | 10 |  |  |  |  |
| DAM3-C-B1-S-339 |  | Rebar for Grade Beams | 5d | 2026-06-08 A | 2026-06-09 A | DAM3-C-B1-S-338 | 100% | 2026-07-29 | 2026-08-04 |  |  | Steel Fixer [80 h]; Construction Cost [27194.5] | 27,194.46 | 27,194.46 | 1 | 05 | 01 | 06 |  |  |  |  |  |  |  |
| DAM3-C-B1-S-340 |  | Formwork for Grade Beams | 2d | 2026-06-11 A | 2026-06-15 A | DAM3-C-B1-S-339 | 100% | 2026-08-02 | 2026-08-04 |  |  | Carperter [32 h]; Construction Cost [6798.61] | 6,798.61 | 6,798.61 | 1 | 05 | 01 | 06 |  |  |  |  |  |  |  |
| DAM3-C-B1-S-341 |  | Anchor bolts installation | 2d | 2026-06-11 A | 2026-06-13 A | DAM3-C-B1-S-340 SS | 100% | 2026-08-02 | 2026-08-04 |  |  | Carperter [32 h]; Construction Cost [57238.8] | 57,238.83 | 57,238.83 | 1 | 05 | 01 | 06 |  |  |  |  |  |  |  |
| DAM3-C-B1-S-342 |  | Pouring Concrete for Grade Beams | 1d | 2026-06-17 A | 2026-06-17 A | DAM3-C-B1-S-340, DAM3-C-B1-S-341 | 100% | 2026-07-22 | 2026-07-23 |  |  | Mason [16 h]; Carperter [16 h]; Concrete Mixer [8 h]; Steel Fixer [16 h]; Equipment Operator [16 h]; Construction Cost [33993.1] | 33,993.09 | 33,993.09 | 1 | 05 | 01 | 06 | H1.C.K1.00.RC.F.1110 | PH1-MHR-ST-1030 | 21 |  |  |  |  |
| DAM3-C-B1-S-347 |  | Damp proof /Bitumin paint on Grade Beams | 5d | 2026-06-23 A | 2026-06-25 A | DAM3-C-B1-S-342 | 100% | 2026-07-28 | 2026-08-03 |  |  | Painter [80 h]; Construction Cost [24777.7] | 24,777.73 | 24,777.73 | 1 | 05 | 01 | 06 | H1.C.K1.00.SW.F.1050 | PH1-MHR-ST-1080 | 15 |  |  |  |  |
|  | 5 | **SLAB ON GRADE** |  | 2026-06-27 | 2026-11-21 |  |  |  |  |  |  |  |  |  |  |  |  |  |  |  |  |  |  |  |  |
| DAM3-C-B1-S-377 |  | Backfilling / Compaction for Slab on Grade | 7d | 2026-06-27 A | 2026-07-05 A | DAM3-C-B1-S-347 | 100% | 2026-07-12 | 2026-07-19 |  |  | Mini Roller Compactor [128 h]; General Labour [256 h]; Equipment Operator [256 h]; Wheel Loader [128 h]; Truck [128 h]; Construction Cost [23023.1] | 23,023.09 | 23,023.09 | 1 | 05 | 01 | 06 |  |  |  |  |  |  |  |
| DAM3-C-B1-S-378 |  | Anti Termite Treatment below Ground Slab | 1d | 2026-08-06 A | 2026-08-08 A | DAM3-C-B1-S-377 | 100% | 2026-08-06 | 2026-08-06 |  |  | General Labour [16 h]; Construction Cost [15874.1] | 15,874.08 | 15,874.08 | 1 | 05 | 01 | 06 | H1.C.A1.06.SW.F.1220 | PH1-MHR-ST-645 | 15 |  |  |  |  |
| DAM3-C-B1-S-379 |  | Vapour barrier for below Ground Slab | 2d | 2026-08-06 A | 2026-08-08 A | DAM3-C-B1-S-378 | 100% | 2026-08-08 | 2026-08-09 |  |  | General Labour [32 h]; Construction Cost [13233.5] | 13,233.49 | 13,233.49 | 1 | 05 | 01 | 06 |  |  |  |  |  |  |  |
| DAM3-C-B1-S-382 |  | Pouring Concrete for Ground Slab | 4d | 2026-08-06 A | 2026-08-08 A | DAM3-C-B1-S-379 | 100% | 2026-08-10 | 2026-08-13 |  |  | Mason [64 h]; Carperter [64 h]; Steel Fixer [64 h]; Concrete Mixer [32 h]; Equipment Operator [64 h]; Construction Cost [344195] | 344,195.21 | 344,195.21 | 1 | 05 | 01 | 06 | H1.C.A1.06.RC.G.1210 | PH1-MHR-ST-496 | 24 |  |  |  |  |
| DAM3-C-B1-S-517 |  | Concrete pad | 7d | 2026-11-14 | 2026-11-21 | DAM3-C-B1-A-0150 |  |  |  | 33.5d | 14d | Mason [112 h]; Construction Cost [907.11] | 907.11 |  |  | 05 | 01 | 06 |  |  |  |  |  |  |  |
|  | 4 | **COLUMNS & BEAMS** |  | 2026-06-08 | 2026-10-10 |  |  |  |  |  |  |  |  |  |  |  |  |  |  |  |  |  |  |  |  |
| DAM3-C-B1-S-6101 |  | Rebar for Tie Beams | 4d | 2026-06-08 A | 2026-06-09 A | DAM3-C-B1-S-5103 | 100% | 2026-08-04 | 2026-08-09 |  |  | Steel Fixer [64 h]; Construction Cost [7263.64] | 7,263.64 | 7,263.64 | 1 | 05 | 01 | 06 |  |  |  | 3 | 1 | 4 | 1 |
| DAM3-C-B1-S-6102 |  | Formwork for Tie Beams | 2d | 2026-06-11 A | 2026-06-15 A | DAM3-C-B1-S-6101 | 100% | 2026-08-09 | 2026-08-11 |  |  | Carperter [32 h]; Construction Cost [1815.91] | 1,815.91 | 1,815.91 | 1 | 05 | 01 | 06 |  |  |  | 3 | 1 | 4 | 1 |
| DAM3-C-B1-S-6103 |  | Pouring Concrete for Tie Beams | 1d | 2026-06-17 A | 2026-06-17 A | DAM3-C-B1-S-6102 | 100% | 2026-08-11 | 2026-08-12 |  |  | Mason [16 h]; Carperter [16 h]; Concrete Mixer [32 h]; Steel Fixer [16 h]; Equipment Operator [16 h]; Construction Cost [9079.54] | 9,079.54 | 9,079.54 | 1 | 05 | 01 | 06 | H1.C.K1.00.RC.F.1110 | PH1-MHR-ST-1030 | 21 | 3 | 1 | 4 | 1 |
| DAM3-C-B1-S-5101 |  | Rebar for column | 5d | 2026-07-26 A | 2026-07-28 A | DAM3-C-B1-S-377 | 100% | 2026-07-28 | 2026-08-02 |  |  | Steel Fixer [112 h]; Construction Cost [20144] | 20,144.05 | 20,144.05 | 1 | 05 | 01 | 06 |  |  |  | 3 | 1 | 4 | 1 |
| DAM3-C-B1-S-5102 |  | Formwork for column | 4d | 2026-08-22 A | 2026-08-27 A | DAM3-C-B1-S-5101 | 100% | 2026-08-25 | 2026-08-29 |  |  | Carperter [64 h]; Construction Cost [5036.01] | 5,036.01 | 5,036.01 | 1 | 05 | 01 | 06 |  |  |  | 3 | 1 | 4 | 1 |
| DAM3-C-B1-S-5103 |  | Pouring Concrete for column | 1d | 2026-08-25 A | 2026-08-29 A | DAM3-C-B1-S-5102 | 100% | 2026-08-30 | 2026-08-30 |  |  | Mason [16 h]; Carperter [16 h]; Concrete Mixer [32 h]; Steel Fixer [16 h]; Equipment Operator [16 h]; Construction Cost [25180.1] | 25,180.06 | 25,180.06 | 1 | 05 | 01 | 06 | H1.C.K1.00.RC.F.1110 | PH1-MHR-ST-1030 | 21 | 3 | 1 | 4 | 1 |
| DAM3-C-B1-S-6113 |  | Rebar for Beams | 4d | 2026-09-27 A | 2026-10-04 A | DAM3-C-B1-S-6103 | 100% | 2026-09-28 | 2026-10-01 |  |  | Steel Fixer [64 h]; Construction Cost [13379.1] | 13,379.11 | 13,379.11 | 1 | 05 | 01 | 06 |  |  |  | 3 | 1 | 4 | 1 |
| DAM3-C-B1-S-6123 |  | Formwork for Beams | 2d | 2026-09-29 A | 2026-10-06 A | DAM3-C-B1-S-6113, DAM3-C-B1-S-6113 FF, DAM3-C-B2-S-6133 | 100% | 2026-10-07 | 2026-10-10 |  |  | Carperter [32 h]; Construction Cost [3344.77] | 3,344.77 | 3,344.77 | 1 | 05 | 01 | 06 |  |  |  | 3 | 1 | 4 | 1 |
| DAM3-C-B1-S-6133 |  | Pouring Concrete for Beams | 1d | 2026-10-07 A | 2026-10-10 A | DAM3-C-B1-S-6123, DAM3-C-B1-S-6123 FF | 100% | 2026-10-10 | 2026-10-10 |  |  | Mason [16 h]; Carperter [16 h]; Concrete Mixer [32 h]; Steel Fixer [16 h]; Equipment Operator [16 h]; Construction Cost [16723.9] | 16,723.88 | 16,723.88 | 1 | 05 | 01 | 06 | H1.C.K1.00.RC.F.1110 | PH1-MHR-ST-1030 | 21 | 3 | 1 | 4 | 1 |

| ID | WBS | Activity | Duration | Start | Finish | Predecessors | Complete | Planned start | Planned finish | Total float | Free float | Resources | Cost | Actual cost | Phasing Code Category | Discipline | Project component code | 00 Activity ID | Zone # |
| --- | --- | --- | --- | --- | --- | --- | --- | --- | --- | --- | --- | --- | --- | --- | --- | --- | --- | --- | --- |
|  | 5 | **STRUCTURAL STEEL** |  | 2026-07-11 | 2026-11-26 |  |  |  |  |  |  |  |  |  |  |  |  |  |  |
| DAM3-C-B1-SS-0100 |  | Installation of columns | 3d | 2026-07-11 A | 2026-07-11 A | DAM3-C-B1-S-382, DAM3-C-B2-SS-0110 SS | 100% | 2026-09-26 | 2026-09-28 |  |  | Structural Steel Fixer [80 h]; General Labour [80 h]; Equipment Operator [80 h]; Mobile Crane [24 h]; Construction Cost [217508] | 217,507.55 | 217,507.55 | 05 | 02 | 06 |  |  |
| DAM3-C-B1-SS-0110 |  | Installation of raft and purlins | 5d | 2026-07-11 A | 2026-07-13 A | DAM3-C-B1-SS-0100 | 100% | 2026-09-29 | 2026-10-04 |  |  | Structural Steel Fixer [160 h]; General Labour [160 h]; Mobile Crane [56 h]; Equipment Operator [160 h]; Construction Cost [326261] | 326,261.32 | 326,261.32 | 05 | 02 | 06 |  |  |
| DAM3-C-B1-SS-610 |  | Intumescent paint to steel works | 7d | 2026-07-25 A | 2026-07-28 A | DAM3-C-B1-SS-0110 | 100% | 2026-10-06 | 2026-10-13 |  |  | Painter [112 h]; Construction Cost [317760] | 317,759.56 | 317,759.56 | 05 | 02 | 06 | H1.C.A1.SA.FI.G.0730 | 1 |
| DAM3-C-B1-SS-0140 |  | Installation of roof sheet | 5d | 2026-08-04 A | 2026-08-11 A | DAM3-C-B1-SS-610, DAM3-C-B1-S-6133 | 100% | 2026-10-15 | 2026-10-20 |  |  | Roof sheet worker [160 h]; General Labour [160 h]; Mobile Crane [40 h]; Equipment Operator [160 h]; Construction Cost [217508] | 217,507.55 | 217,507.55 | 05 | 02 | 06 |  |  |
| DAM3-C-B1-SS-620 |  | Steel members for office area | 7d | 2026-11-05 | 2026-11-12 | DAM3-C-B1-SS-610, DAM3-C-B1-SS-0110 |  |  |  | 17d | 0d | Construction Cost [115805]; Structural Steel Fixer [112 h]; Mobile Crane [56 h]; General Labour [112 h]; Equipment Operator [112 h] | 115,805.2 |  | 05 | 02 | 06 | H1.C.A1.SA.FI.G.0730 | 1 |
| DAM3-C-B1-SS-1020 |  | Epoxy paint to steel members at office area | 7d | 2026-11-14 | 2026-11-21 | DAM3-C-B1-SS-620 |  |  |  | 17d | 0d | Painter [112 h]; Construction Cost [23161] | 23,161.04 |  | 05 | 02 | 06 | H1.C.A1.SA.FI.G.0730 | 1 |
| DAM3-C-B1-SS-1030 |  | Steel members for external platform | 7d | 2026-11-14 | 2026-11-21 | DAM3-C-B1-SS-620 |  |  |  | 17d | 0d | Construction Cost [18670.8]; General Labour [112 h]; Mobile Crane [56 h]; Structural Steel Fixer [112 h]; Equipment Operator [112 h] | 18,670.78 |  | 05 | 02 | 06 | H1.C.A1.SA.FI.G.0730 | 1 |
| DAM3-C-B1-SS-0130 |  | Installation of wall sandwich panel | 5d | 2026-11-22 | 2026-11-26 | DAM3-C-B1-A-0150, DAM3-C-B1-SS-1020 |  |  |  | 17d | 0d | Sandwich panel worker [112 h]; General Labour [112 h]; Mobile Crane [40 h]; Equipment Operator [112 h]; Construction Cost [326261] | 326,261.32 |  | 05 | 02 | 06 |  |  |
| DAM3-C-B1-SS-1040 |  | Epoxy paint for external platform | 5d | 2026-11-22 | 2026-11-26 | DAM3-C-B1-SS-1030, DAM3-C-B1-SS-1030 FF |  |  |  | 17d | 0d | Painter [80 h]; Construction Cost [3734.16] | 3,734.16 |  | 05 | 02 | 06 | H1.C.A1.SA.FI.G.0730 | 1 |
|  | 2 | **ARCHITECTURAL** |  | 2026-08-10 | 2027-02-17 |  |  |  |  |  |  |  |  |  |  |  |  |  |  |
|  | 1 | **MASONARY WORKS** |  | 2026-08-15 | 2026-09-07 |  |  |  |  |  |  |  |  |  |  |  |  |  |  |
| DAM3-C-B1-A-0120 |  | Block work at factory area | 10d | 2026-08-15 A | 2026-08-23 A | DAM3-C-B1-S-382, DAM3-C-B1-SS-0110 | 100% | 2026-10-28 | 2026-11-08 |  |  | AAC panel erector [240 h]; General Labour [240 h]; Equipment Operator [240 h]; Mobile Crane [120 h]; Construction Cost [58338.7] | 58,338.72 | 58,338.72 | 05 | 03 | 06 |  |  |
| DAM3-C-B1-A-0150 |  | Block work at office area | 7d | 2026-08-23 A | 2026-09-06 A | DAM3-C-B1-SS-0140 SS, DAM3-C-B1-SS-620, DAM3-C-B1-A-0120 | 100% | 2026-11-05 | 2026-11-12 |  |  | AAC panel erector [160 h]; General Labour [160 h]; Mobile Crane [56 h]; Equipment Operator [160 h]; Construction Cost [6179.18] | 6,179.18 | 6,179.18 | 05 | 03 | 06 |  |  |
| DAM3-C-B1-A-170 |  | Block work at toilet area | 7d | 2026-09-02 A | 2026-09-07 A | DAM3-C-B1-A-0150, DAM3-C-B4-A-1370, DAM3-C-B6-M-490 | 100% | 2026-11-21 | 2026-11-29 |  |  | Mason [112 h]; Construction Cost [14436.3] | 14,436.31 | 14,436.31 | 05 | 03 | 06 |  | 1 |
|  | 5 | **WALL FINISHES** |  | 2026-12-08 | 2027-01-25 |  |  |  |  |  |  |  |  |  |  |  |  |  |  |
| DAM3-C-B1-A-180 |  | Internal Wall Plaster | 10d | 2026-12-08 | 2026-12-19 | DAM3-C-B1-A-170, DAM3-C-B1-E-183, DAM3-C-B1-S-517 |  |  |  | 19.5d | 0d | Mason [240 h]; Construction Cost [48590.2] | 48,590.16 |  | 05 | 03 | 06 | H1.C.A1.SA.FI.G.0710 | 1 |
| DAM3-C-B1-A-230 |  | Paint to Plaster (Primer, Putty & First Coat) | 3d | 2027-01-21 | 2027-01-25 | DAM3-C-B1-A-250 |  |  |  | 4.1d | 0d | Painter [112 h]; Construction Cost [44167.3] | 44,167.3 |  | 05 | 03 | 06 | H1.C.A1.SA.FI.G.0730 | 1 |
|  | 2 | **CIELING FINISHES** |  | 2026-12-29 | 2026-12-31 |  |  |  |  |  |  |  |  |  |  |  |  |  |  |
| DAM3-C-B1-A-240 |  | Installation of Ceiling Gypsum Board | 3d | 2026-12-29 | 2026-12-31 | DAM3-C-B1-A-220, DAM3-C-B1-S-517 |  |  |  | 19.5d | 15.4d | Carperter [80 h]; Construction Cost [46792.3] | 46,792.3 |  | 05 | 03 | 06 | H1.C.A1.SA.FI.G.0820 | 1 |
|  | 6 | **FLOOR FINISHES** |  | 2026-12-24 | 2027-02-17 |  |  |  |  |  |  |  |  |  |  |  |  |  |  |
| DAM3-C-B1-A-220 |  | Tiles for Toilet | 4d | 2026-12-24 | 2026-12-28 | DAM3-C-B1-A-370 |  |  |  | 19.5d | 0d | Tile Fixer [112 h]; Construction Cost [46530.7] | 46,530.71 |  | 05 | 03 | 06 | H1.C.A1.SA.FI.G.0640 | 1 |
| DAM3-C-B1-A-250 |  | Tiles for Office Area | 2d | 2027-01-19 | 2027-01-21 | DAM3-C-B1-A-240, DAM3-C-B6-E-720 |  |  |  | 4.1d | 0d | Tile Fixer [32 h]; Construction Cost [26867.3] | 26,867.31 |  | 05 | 03 | 06 |  |  |
| DAM3-C-B1-A-390 |  | Granite strip | 2d | 2027-01-21 | 2027-01-24 | DAM3-C-B1-A-558, DAM3-C-B1-A-250, DAM3-C-B6-E-343 |  |  |  | 6.1d | 0d | Tile Fixer [32 h]; Construction Cost [671.12] | 671.12 |  | 05 | 03 | 06 | H1.C.A1.SA.FI.G.0640 | 1 |
| DAM3-C-B1-A-420 |  | Epoxy paint | 7d | 2027-02-09 | 2027-02-17 | DAM3-C-B1-A-340 |  |  |  | 8.1d | 7.1d | Painter [112 h]; Construction Cost [115420] | 115,419.76 |  | 05 | 03 | 06 |  |  |

| ID | WBS | Activity | Duration | Start | Finish | Predecessors | Complete | Planned start | Planned finish | Total float | Free float | Resources | Cost | Actual cost | Phasing Code Category | Discipline | Project component code | Ordinal Start | Ordinal Finish | 00 Activity ID | Ordinal Duration | Zone # |
| --- | --- | --- | --- | --- | --- | --- | --- | --- | --- | --- | --- | --- | --- | --- | --- | --- | --- | --- | --- | --- | --- | --- |
|  | 3 | **DOORS & WINDOWS** |  | 2026-11-28 | 2026-12-17 |  |  |  |  |  |  |  |  |  |  |  |  |  |  |  |  |  |
| DAM3-C-B1-A-552 |  | Window (CW1) | 5d | 2026-11-28 | 2026-12-02 | DAM3-C-B1-SS-0130, DAM3-C-B1-SS-1040 |  |  |  | 17d | 0d | Carperter [112 h]; Construction Cost [94173.2] | 94,173.21 |  | 05 | 03 | 06 |  |  |  |  |  |
| DAM3-C-B1-A-553 |  | Roll up Shutter Door | 1d | 2026-12-03 | 2026-12-03 | DAM3-C-B1-A-552 |  |  |  | 17d | 0d | Carperter [16 h]; Construction Cost [68619.2] | 68,619.2 |  | 05 | 03 | 06 |  |  |  |  |  |
| DAM3-C-B1-A-200 |  | Supply and install (D5) 1000*2200mm single leaf steel door with door | 1d | 2026-12-05 | 2026-12-05 | DAM3-C-B1-A-553 |  |  |  | 17d | 0d | Carperter [16 h]; Construction Cost [16016.2] | 16,016.16 |  | 05 | 03 | 06 |  |  |  |  |  |
| DAM3-C-B1-A-554 |  | Supply and install (D4) 800*2200 mm single leaf aluminum door with door | 1d | 2026-12-06 | 2026-12-06 | DAM3-C-B1-A-200 |  |  |  | 17d | 0d | Carperter [16 h]; Construction Cost [22737.8] | 22,737.85 |  | 05 | 03 | 06 |  |  |  |  |  |
| DAM3-C-B1-A-555 |  | Supply and install (D7) 1000*2200 mm single leaf aluminum door with door | 1d | 2026-12-07 | 2026-12-07 | DAM3-C-B1-A-554 |  |  |  | 17d | 0d | Carperter [16 h]; Construction Cost [7811.07] | 7,811.07 |  | 05 | 03 | 06 |  |  |  |  |  |
| DAM3-C-B1-A-556 |  | Supply and install (D3) 1000*2200 mm single leaf aluminum door with door | 1d | 2026-12-08 | 2026-12-08 | DAM3-C-B1-A-555 |  |  |  | 17d | 0d | Carperter [16 h]; Construction Cost [16016.2] | 16,016.16 |  | 05 | 03 | 06 |  |  |  |  |  |
| DAM3-C-B1-A-557 |  | Supply and install fire rated 45 min (D2) 1200*2200 mm single leaf steel door | 1d | 2026-12-09 | 2026-12-09 | DAM3-C-B1-A-556 |  |  |  | 17d | 6d | Carperter [16 h]; Construction Cost [16711.5] | 16,711.52 |  | 05 | 03 | 06 |  |  |  |  |  |
| DAM3-C-B1-A-558 |  | Skylight fixtures installation | 1d | 2026-12-17 | 2026-12-17 | DAM3-C-B1-A-557, DAM3-C-B6-M-550 |  |  |  | 11d | 0d | Carperter [16 h]; Construction Cost [6489.89] | 6,489.89 |  | 05 | 03 | 06 |  |  |  |  |  |
|  | 4 | **WATER PROOFING WORKS** |  | 2026-12-20 | 2026-12-23 |  |  |  |  |  |  |  |  |  |  |  |  |  |  |  |  |  |
| DAM3-C-B1-A-370 |  | Waterproofing membrane for toilets | 4d | 2026-12-20 | 2026-12-23 | DAM3-C-B1-M-200, DAM3-C-B1-A-180, DAM3-C-B6-E-533 |  |  |  | 19.5d | 0d | General Labour [64 h]; Construction Cost [4879.02] | 4,879.02 |  | 05 | 03 | 06 |  |  |  |  |  |
|  | 7 | **METAL WORKS** |  | 2026-08-10 | 2027-02-01 |  |  |  |  |  |  |  |  |  |  |  |  |  |  |  |  |  |
| DAM3-C-B1-A-300 |  | Galvanised Steel Gratings | 2d | 2026-08-10 A | 2026-08-10 A | DAM3-C-B1-A-292 | 100% | 2027-01-31 | 2027-02-01 |  |  | Steel Fixer [32 h]; General Labour [32 h]; Construction Cost [6455.16] | 6,455.16 | 6,455.16 | 05 | 03 | 06 |  |  |  |  |  |
| DAM3-C-B1-A-290 |  | Steel Ladder | 2d | 2027-01-24 | 2027-01-26 | DAM3-C-B1-A-390, DAM3-C-B4-A-1260 |  |  |  | 6.1d | 0d | Steel Fixer [32 h]; General Labour [32 h]; Construction Cost [9839.16] | 9,839.16 |  | 05 | 03 | 06 |  |  |  |  |  |
| DAM3-C-B1-A-291 |  | Steel railing works | 2d | 2027-01-26 | 2027-01-28 | DAM3-C-B1-A-290 |  |  |  | 6.1d | 0d | Steel Fixer [64 h]; General Labour [64 h]; Construction Cost [1533.98] | 1,533.98 |  | 05 | 03 | 06 |  |  |  |  |  |
| DAM3-C-B1-A-292 |  | Aluminium composite panel | 3d | 2027-01-28 | 2027-02-01 | DAM3-C-B1-A-291 |  |  |  | 6.1d | 0d | Steel Fixer [80 h]; General Labour [80 h]; Construction Cost [175889] | 175,888.76 |  | 05 | 03 | 06 |  |  |  |  |  |
|  | 8 | **SPECIALTIES** |  | 2027-02-01 | 2027-02-09 |  |  |  |  |  |  |  |  |  |  |  |  |  |  |  |  |  |
| DAM3-C-B1-A-320 |  | Installation of fittings | 3d | 2027-02-01 | 2027-02-04 | DAM3-C-B1-A-300 |  |  |  | 6.1d | 0d | Plumber [80 h]; Construction Cost [22981.3] | 22,981.27 |  | 05 | 03 | 06 |  |  |  |  |  |
| DAM3-C-B1-A-570 |  | Identification sign; ID01 & ID02 | 3d | 2027-02-04 | 2027-02-08 | DAM3-C-B1-A-320 |  |  |  | 6.1d | 0d | Mason [48 h]; Construction Cost [9630.56] | 9,630.56 |  | 05 | 03 | 06 |  |  |  |  |  |
| DAM3-C-B1-A-340 |  | Furniture Installation | 1d | 2027-02-08 | 2027-02-09 | DAM3-C-B1-A-570 |  |  |  | 6.1d | 0d | General Labour [16 h]; Mason [16 h]; Construction Cost [12468.8] | 12,468.83 |  | 05 | 03 | 06 |  |  |  |  |  |
|  | 3 | **MECHANICAL** |  | 2026-07-18 | 2027-02-11 |  |  |  |  |  |  |  |  |  |  |  |  |  |  |  |  |  |
|  | 1 | **HVAC** |  | 2027-01-25 | 2027-02-08 |  |  |  |  |  |  |  |  |  |  |  |  |  |  |  |  |  |
|  | 1 | **FIRST STAGE** |  | 2027-01-30 | 2027-02-03 |  |  |  |  |  |  |  |  |  |  |  |  |  |  |  |  |  |
| DAM3-C-B1-M-140 |  | Installation of HVAC Ducts | 2d | 2027-01-30 | 2027-02-01 | DAM3-C-B1-M-160 |  |  |  | 4.1d | 0d | Ductman [32 h]; Construction Cost [149489] | 149,489.33 |  | 05 | 04 | 06 | 0 | 0 | H1.C.A1.0A.MH.G.1040 | 0 | 1 |
| DAM3-C-B1-M-170 |  | Installation of Duct insulation | 2d | 2027-02-01 | 2027-02-03 | DAM3-C-B1-M-140 |  |  |  | 4.1d | 0d | Ductman [32 h]; Construction Cost [21205.4] | 21,205.4 |  | 05 | 04 | 06 |  |  |  |  |  |

| ID | WBS | Activity | Duration | Start | Finish | Predecessors | Complete | Planned start | Planned finish | Total float | Free float | Resources | Cost | Actual cost | Ordinal Start | Ordinal Finish | 00 Activity ID | Ordinal Duration | Zone # | Phasing Code Category | Discipline | Project component code |
| --- | --- | --- | --- | --- | --- | --- | --- | --- | --- | --- | --- | --- | --- | --- | --- | --- | --- | --- | --- | --- | --- | --- |
|  | 2 | **SECOND STAGE** |  | 2027-01-25 | 2027-02-08 |  |  |  |  |  |  |  |  |  |  |  |  |  |  |  |  |  |
| DAM3-C-B1-M-130 |  | Installation of Exhaust Fans | 2d | 2027-01-25 | 2027-01-27 | DAM3-C-B1-A-230 |  |  |  | 4.1d | 0d | AC Technician [32 h]; Construction Cost [7938.56] | 7,938.56 |  | 0 | 0 | H1.C.A1.0A.MH.X.4050 | 0 | 1 | 05 | 04 | 06 |
| DAM3-C-B1-M-160 |  | Installation of Wall Propeller Type Exhaust Fan | 2d | 2027-01-27 | 2027-01-30 | DAM3-C-B1-M-130 |  |  |  | 4.1d | 0d | AC Technician [64 h]; Construction Cost [46831.6] | 46,831.64 |  |  |  |  |  |  | 05 | 04 | 06 |
| DAM3-C-B1-M-339 |  | Installation of Diffuser | 2d | 2027-02-03 | 2027-02-06 | DAM3-C-B1-M-170 |  |  |  | 4.1d | 0d | Ductman [32 h]; Construction Cost [2144] | 2,144 |  | 0 | 0 | H1.C.A1.0A.MH.G.3010 | 0 | 1 | 05 | 04 | 06 |
| DAM3-C-B1-M-340 |  | Supply, install, test and commission door grilles & exhaust louvers | 2d | 2027-02-06 | 2027-02-08 | DAM3-C-B1-M-339 |  |  |  | 4.1d | 0d | Ductman [32 h]; Construction Cost [5574.4] | 5,574.4 |  | 0 | 0 | H1.C.A1.0A.MH.G.3010 | 0 | 1 | 05 | 04 | 06 |
|  | 2 | **FIRE FIGHTING SYSTEM** |  | 2026-09-06 | 2027-02-11 |  |  |  |  |  |  |  |  |  |  |  |  |  |  |  |  |  |
|  | 1 | **FIRST STAGE** |  | 2026-09-06 | 2026-09-09 |  |  |  |  |  |  |  |  |  |  |  |  |  |  |  |  |  |
| DAM3-C-B1-M-300 |  | Installation of Fire Fighting Pipes (Seamless Black Steel) | 7d | 2026-09-06 A | 2026-09-09 A | DAM3-C-B1-A-230 | 100% | 2027-01-25 | 2027-02-02 |  |  | Pipe Fitter [112 h]; Construction Cost [72394.8] | 72,394.75 | 72,394.75 | 0 | 0 | H1.C.A1.0A.MF.G.1010 | 0 | 1 | 05 | 04 | 06 |
| DAM3-C-B1-M-310 |  | Installation of Fire Fighting Valve | 5d | 2026-09-08 A | 2026-09-09 A | DAM3-C-B1-M-300 | 100% | 2027-01-21 | 2027-01-27 |  |  | Pipe Fitter [80 h]; Construction Cost [12199.4] | 12,199.4 | 12,199.4 | 0 | 0 | H1.C.A1.0A.MF.G.2010 | 0 | 1 | 05 | 04 | 06 |
|  | 2 | **SECOND STAGE** |  | 2027-01-25 | 2027-02-11 |  |  |  |  |  |  |  |  |  |  |  |  |  |  |  |  |  |
| DAM3-C-B1-M-320 |  | Installation of Fire Hose Cabinet | 3d | 2027-01-25 | 2027-01-28 | DAM3-C-B1-M-310 |  |  |  | 16.1d | 12.6d | Pipe Fitter [48 h]; Construction Cost [15158.6] | 15,158.56 |  | 0 | 0 | H1.C.A1.0A.MF.G.3010 | 0 | 1 | 05 | 04 | 06 |
| DAM3-C-B1-M-370 |  | Supply, install, test and commission Fire Department Connection(FDC) | 3d | 2027-02-08 | 2027-02-11 | DAM3-C-B1-M-340, DAM3-C-B1-M-310 |  |  |  | 4.1d | 0.6d | Pipe Fitter [48 h]; Construction Cost [2706.06] | 2,706.06 |  | 0 | 0 | H1.C.A1.0A.MF.G.3010 | 0 | 1 | 05 | 04 | 06 |
|  | 3 | **SEWER AND DRAINAGE SYSTEM** |  | 2026-07-18 | 2027-01-16 |  |  |  |  |  |  |  |  |  |  |  |  |  |  |  |  |  |
|  | 1 | **FIRST STAGE** |  | 2026-07-18 | 2026-12-30 |  |  |  |  |  |  |  |  |  |  |  |  |  |  |  |  |  |
| DAM3-C-B1-M-200 |  | Installation of Sanitary Waste / Drainage Pipes | 4d | 2026-07-18 A | 2026-07-25 A | DAM3-C-B1-S-347 | 100% | 2026-07-21 | 2026-07-25 |  |  | Plumber [64 h]; Construction Cost [18585.1] | 18,585.14 | 18,585.14 | 0 | 0 | H1.C.K1.00.MP.G.1020 | 0 | 1 | 05 | 04 | 06 |
| DAM3-C-B1-M-380 |  | Installation of Trench drain | 5d | 2026-07-19 A | 2026-07-25 A | DAM3-C-B1-M-220 | 100% | 2026-12-10 | 2026-12-16 |  |  | Plumber [80 h]; Construction Cost [11508.8] | 11,508.8 | 11,508.8 |  |  |  |  |  | 05 | 04 | 06 |
| DAM3-C-B1-M-220 |  | Installation of Floor Drain | 2d | 2026-12-29 | 2026-12-30 | DAM3-C-B1-M-200, DAM3-C-B1-A-220 |  |  |  | 24.4d | 0d | Plumber [32 h]; Construction Cost [11056] | 11,055.96 |  |  |  |  |  | 1 | 05 | 04 | 06 |
|  | 2 | **SECOND STAGE** |  | 2026-12-31 | 2027-01-16 |  |  |  |  |  |  |  |  |  |  |  |  |  |  |  |  |  |
| DAM3-C-B1-M-180 |  | Installation of Electric Water Heater | 2d | 2026-12-31 | 2027-01-02 | DAM3-C-B1-M-380 |  |  |  | 24.4d | 0d | Plumber [32 h]; Construction Cost [1819.51] | 1,819.51 |  | 0 | 0 | H1.C.K1.00.MP.G.1030 | 0 | 1 | 05 | 04 | 06 |
| DAM3-C-B1-M-190 |  | Installation of Sanitary Fixture and Accessories | 4d | 2027-01-03 | 2027-01-06 | DAM3-C-B1-M-180 |  |  |  | 24.4d | 0d | Plumber [64 h]; Construction Cost [19921.7] | 19,921.72 |  | 0 | 0 | H1.C.K1.00.MP.G.2040 | 0 | 1 | 05 | 04 | 06 |
| DAM3-C-B1-M-210 |  | Installation of Lavotary /Wash Basin | 2d | 2027-01-07 | 2027-01-09 | DAM3-C-B1-M-180, DAM3-C-B1-M-190 |  |  |  | 24.4d | 0d | Plumber [32 h]; Construction Cost [21416.7] | 21,416.68 |  |  |  |  |  | 1 | 05 | 04 | 06 |
| DAM3-C-B1-M-270 |  | Installation of Bib Tap | 2d | 2027-01-10 | 2027-01-11 | DAM3-C-B1-M-190, DAM3-C-B1-M-210 |  |  |  | 24.4d | 0d | Plumber [32 h]; Construction Cost [1900.66] | 1,900.66 |  |  |  |  |  |  | 05 | 04 | 06 |
| DAM3-C-B1-M-428 |  | Installation of Water Tap | 2d | 2027-01-12 | 2027-01-13 | DAM3-C-B1-M-210, DAM3-C-B1-M-270 |  |  |  | 24.4d | 0d | Plumber [32 h]; Construction Cost [2874.14] | 2,874.14 |  |  |  |  |  |  | 05 | 04 | 06 |
| DAM3-C-B1-M-429 |  | Installation of Roof Vent Cap | 2d | 2027-01-14 | 2027-01-16 | DAM3-C-B1-M-428 |  |  |  | 24.4d | 13.4d | Pipe Fitter [32 h]; Construction Cost [927.12] | 927.12 |  |  |  |  |  |  | 05 | 04 | 06 |

| ID | WBS | Activity | Duration | Start | Finish | Predecessors | Complete | Remaining | Planned start | Planned finish | Total float | Free float | Resources | Cost | Actual cost | Ordinal Start | Ordinal Finish | 00 Activity ID | Ordinal Duration | Zone # | Phasing Code Category | Discipline | Project component code |
| --- | --- | --- | --- | --- | --- | --- | --- | --- | --- | --- | --- | --- | --- | --- | --- | --- | --- | --- | --- | --- | --- | --- | --- |
|  | 4 | **WATER SUPPLY SYSTEM** |  | 2026-10-13 | 2027-02-04 |  |  |  |  |  |  |  |  |  |  |  |  |  |  |  |  |  |  |
|  | 1 | **FIRST STAGE** |  | 2026-10-13 | 2027-01-30 |  |  |  |  |  |  |  |  |  |  |  |  |  |  |  |  |  |  |
| DAM3-C-B1-M-280 |  | Installation of Water Supply Valve | 2d | 2026-10-13 A | 2027-01-30 | DAM3-C-B1-M-290 | 25% | 1.5d | 2027-01-30 | 2027-02-01 | 9.6d | 0d | Plumber [32 h]; Construction Cost [18274.3] | 18,274.27 | 4,568.57 | 0 | 0 | H1.C.K1.00.MP.G.2010 | 0 | 1 | 05 | 04 | 06 |
| DAM3-C-B1-M-290 |  | Installation of Water Supply Pipes | 4d | 2026-10-13 A | 2027-01-28 | DAM3-C-B1-A-230 | 25% | 3d | 2027-01-25 | 2027-01-30 | 9.6d | 0d | Plumber [64 h]; Construction Cost [23318.4] | 23,318.41 | 5,829.6 | 0 | 0 | H1.C.K1.00.MP.G.1010 | 0 | 1 | 05 | 04 | 06 |
|  | 2 | **SECOND STAGE** |  | 2027-01-30 | 2027-02-04 |  |  |  |  |  |  |  |  |  |  |  |  |  |  |  |  |  |  |
| DAM3-C-B1-M-330 |  | Capped connection | 5d | 2027-01-30 | 2027-02-04 | DAM3-C-B1-M-280 |  |  |  |  | 9.6d | 0d | Plumber [80 h]; Construction Cost [278.13] | 278.13 |  |  |  |  |  |  | 05 | 04 | 06 |
|  | 4 | **ELECTRICAL** |  | 2026-06-08 | 2027-02-01 |  |  |  |  |  |  |  |  |  |  |  |  |  |  |  |  |  |  |
|  | 1 | **FIRST STAGE** |  | 2026-06-08 | 2027-01-06 |  |  |  |  |  |  |  |  |  |  |  |  |  |  |  |  |  |  |
| DAM3-C-B1-E-113 |  | Installation of Earthing and Grounding | 5d | 2026-06-08 A | 2027-01-06 | DAM3-C-B1-E-223 | 90% | 0.5d | 2026-12-15 | 2026-12-20 | 11d | 4d | Electrician [80 h]; Construction Cost [19646.5] | 19,646.47 | 17,681.82 |  |  | H1.C.K1.00.EM.G.2040 |  | 1 | 05 | 05 | 06 |
| DAM3-C-B1-E-183 |  | Installation of Sleeves & Power outlet | 8d | 2026-06-08 A | 2026-12-07 | DAM3-C-B1-A-170 | 50% | 4d | 2026-11-08 | 2026-11-16 | 19.5d | 0d | Electrician [128 h]; Construction Cost [2920.45] | 2,920.45 | 1,460.23 |  |  |  |  | 1 | 05 | 05 | 06 |
| DAM3-C-B1-E-143 |  | Installation of Conduits and wiring outlets - Fire Alarm System | 4d | 2026-06-09 A | 2026-12-05 | DAM3-C-B1-A-170 | 50% | 2d | 2026-11-08 | 2026-11-11 | 13.6d | 0d | Electrician [64 h]; Construction Cost [1768.31] | 1,768.31 | 884.15 |  |  | H1.C.K1.00.EL.G.1020 |  | 1 | 05 | 05 | 06 |
| DAM3-C-B1-E-163 |  | Installation of Conduites for Lighting Fixture | 4d | 2026-10-01 A | 2026-12-15 | DAM3-C-B1-E-133 | 90% | 0.4d | 2026-12-21 | 2026-12-24 | 13.6d | 2.6d | Electrician [64 h]; Construction Cost [8462.97] | 8,462.97 | 7,616.67 |  |  | H1.C.K1.00.EM.G.2030 |  | 1 | 05 | 05 | 06 |
| DAM3-C-B1-E-233 |  | Installation of Wires | 4d | 2026-12-19 | 2026-12-22 | DAM3-C-B1-E-163, DAM3-C-B1-A-558 |  |  |  |  | 11d | 0d | Electrician [64 h]; Construction Cost [16925.9] | 16,925.94 |  |  |  |  |  |  | 05 | 05 | 06 |
| DAM3-C-B1-E-223 |  | Installation of LV Cables | 4d | 2027-01-02 | 2027-01-05 | DAM3-C-B1-E-213, DAM3-C-B5-M-1300, DAM3-C-B5-M-1250, DAM3-C-B5-A-1610 |  |  |  |  | 11d | 0d | Electrician [64 h]; Construction Cost [36390] | 36,389.98 |  |  |  |  |  |  | 05 | 05 | 06 |
|  | 2 | **SECOND STAGE** |  | 2026-12-06 | 2027-02-01 |  |  |  |  |  |  |  |  |  |  |  |  |  |  |  |  |  |  |
| DAM3-C-B1-E-123 |  | Installation of Fire Alarm Control Panel | 4d | 2026-12-06 | 2026-12-09 | DAM3-C-B1-E-143 |  |  |  |  | 13.6d | 0d | Electrician [64 h]; Construction Cost [19451.4] | 19,451.37 |  |  |  | H1.C.K1.00.EL.X.4120 |  | 1 | 05 | 05 | 06 |
| DAM3-C-B1-E-133 |  | Installation of Fire Detectors & Accessories | 4d | 2026-12-10 | 2026-12-14 | DAM3-C-B1-E-123 |  |  |  |  | 13.6d | 0d | Electrician [64 h]; Construction Cost [56740.4] | 56,740.37 |  |  |  | H1.C.K1.00.EL.G.3020 |  | 1 | 05 | 05 | 06 |
| DAM3-C-B1-E-153 |  | Installation of Lighting fixtures | 4d | 2026-12-23 | 2026-12-27 | DAM3-C-B1-E-233 |  |  |  |  | 36.5d | 3d | Electrician [64 h]; Construction Cost [76166.7] | 76,166.74 |  |  |  | H1.C.K1.00.EM.G.3010 |  | 1 | 05 | 05 | 06 |
| DAM3-C-B1-E-193 |  | Installation of Main Distribution Board | 2d | 2026-12-23 | 2026-12-24 | DAM3-C-B1-E-233, DAM3-C-B5-M-1170 |  |  |  |  | 11d | 0d | Electrician [32 h]; Construction Cost [32472.7] | 32,472.73 |  |  |  | H1.C.K1.00.EM.G.2020 |  | 1 | 05 | 05 | 06 |
| DAM3-C-B1-E-410 |  | Installation of CCTV System | 7d | 2026-12-23 | 2026-12-30 | DAM3-C-B1-E-233 |  |  |  |  | 33.5d | 0d | Plumber [112 h]; Construction Cost [76349.2] | 76,349.24 |  |  |  |  |  |  | 05 | 05 | 06 |
| DAM3-C-B1-E-243 |  | Installation of LP-1 Panel | 2d | 2026-12-26 | 2026-12-27 | DAM3-C-B1-E-193 |  |  |  |  | 11d | 0d | Electrician [32 h]; Construction Cost [18403.5] | 18,403.54 |  |  |  | H1.C.K1.00.EM.G.2020 |  | 1 | 05 | 05 | 06 |
| DAM3-C-B1-E-253 |  | Installation of PP-AC panel | 2d | 2026-12-28 | 2026-12-29 | DAM3-C-B1-E-243 |  |  |  |  | 11d | 0d | Electrician [32 h]; Construction Cost [21648.5] | 21,648.48 |  |  |  | H1.C.K1.00.EM.G.2020 |  | 1 | 05 | 05 | 06 |
| DAM3-C-B1-E-213 |  | Installation of Telephone Cabinet | 2d | 2026-12-30 | 2026-12-31 | DAM3-C-B1-E-253 |  |  |  |  | 11d | 0d | Electrician [32 h]; Construction Cost [26991.1] | 26,991.08 |  |  |  |  |  | 1 | 05 | 05 | 06 |
| DAM3-C-B1-E-273 |  | Installation of Access Control System | 5d | 2026-12-31 | 2027-01-05 | DAM3-C-B1-E-410, DAM3-C-B1-E-153 |  |  |  |  | 33.5d | 0d | Electrician [80 h]; Construction Cost [27616.9] | 27,616.86 |  |  |  | H1.C.K1.00.EM.G.2040 |  | 1 | 05 | 05 | 06 |
| DAM3-C-B1-E-283 |  | Monitor Modules for Fire Alarm | 2d | 2027-01-06 | 2027-01-07 | DAM3-C-B1-E-273, DAM3-C-B1-E-213 |  |  |  |  | 33.5d | 0d | Electrician [32 h]; Construction Cost [3882.38] | 3,882.38 |  |  |  | H1.C.K1.00.EM.G.2040 |  | 1 | 05 | 05 | 06 |
| DAM3-C-B1-E-293 |  | Line Isolator Modules for Fire Alarm | 2d | 2027-01-09 | 2027-01-10 | DAM3-C-B1-E-283 |  |  |  |  | 33.5d | 0d | Electrician [32 h]; Construction Cost [185.4] | 185.4 |  |  |  | H1.C.K1.00.EM.G.2040 |  | 1 | 05 | 05 | 06 |
| DAM3-C-B1-E-303 |  | Firewarning flash light with sounder; wall mounted, Weather proof | 2d | 2027-01-11 | 2027-01-12 | DAM3-C-B1-E-293 |  |  |  |  | 33.5d | 0d | Electrician [32 h]; Construction Cost [3082.69] | 3,082.69 |  |  |  | H1.C.K1.00.EM.G.2040 |  | 1 | 05 | 05 | 06 |
| DAM3-C-B1-E-420 |  | Installation of Solar power plant | 7d | 2027-01-11 | 2027-01-19 | DAM3-C-B2-E-420, DAM3-C-B1-E-113 |  |  |  |  | 7d | 0d | Plumber [112 h]; Construction Cost [253269] | 253,268.71 |  |  |  |  |  |  | 05 | 05 | 06 |
| DAM3-C-B1-E-173 |  | Installation of Wiring Devices | 4d | 2027-01-25 | 2027-01-30 | DAM3-C-B1-E-183, DAM3-C-B1-A-230 |  |  |  |  | 11d | 0d | Electrician [64 h]; Construction Cost [19435.1] | 19,435.09 |  |  |  | H1.C.K1.00.EM.G.3020 |  | 1 | 05 | 05 | 06 |
| DAM3-C-B1-E-203 |  | Installation of Disconnect Switches | 2d | 2027-01-30 | 2027-02-01 | DAM3-C-B1-E-173 |  |  |  |  | 11d | 0d | Electrician [32 h]; Construction Cost [30236] | 30,235.95 |  |  |  |  |  |  | 05 | 05 | 06 |

| ID | WBS | Activity | Duration | Start | Finish | Predecessors | Complete | Planned start | Planned finish | Resources | Cost | Actual cost | 00 Activity ID | AMH Tender Act. ID | Tender Original Duration | Zone # | Phasing Code Category | Discipline | Project component code |
| --- | --- | --- | --- | --- | --- | --- | --- | --- | --- | --- | --- | --- | --- | --- | --- | --- | --- | --- | --- |
|  | 7 | **BLOCK B7** |  | 2026-02-16 | 2026-12-22 |  |  |  |  |  |  |  |  |  |  |  |  |  |  |
|  | 1 | **STRUCTURAL** |  | 2026-02-16 | 2026-11-12 |  |  |  |  |  |  |  |  |  |  |  |  |  |  |
|  | 1 | **FOOTING** |  | 2026-02-16 | 2026-04-11 |  |  |  |  |  |  |  |  |  |  |  |  |  |  |
| DAM3-C-B7-S-150 |  | Excavation for footings | 8d | 2026-02-16 A | 2026-02-19 A | DAM3-C-B6-S-160 SS | 100% | 2026-03-10 | 2026-03-23 | General Labour [112 h]; Equipment Operator [112 h]; Truck [64 h]; Excavator [64 h]; Mini Roller Compactor [64 h]; Construction Cost [89859.6] | 89,859.61 | 89,859.61 | H1.C.K1.00.SW.F.1010 | PH1-MHR-ST-640 | 12 | 1 | 05 | 01 | 07 |
| DAM3-C-B7-S-6263 |  | Soil replacement - rock fill | 6d | 2026-02-21 A | 2026-02-26 A | DAM3-C-B7-S-150 | 100% | 2026-03-21 | 2026-03-26 | General Labour [256 h]; Truck [128 h]; Mini Roller Compactor [128 h]; Equipment Operator [256 h]; Wheel Loader [128 h]; Construction Cost [179062] | 179,061.91 | 179,061.91 | H1.C.K1.00.SW.F.1060 | PH1-MHR-ST-645 | 15 | 1 | 05 | 01 | 07 |
| DAM3-C-B7-S-6273 |  | Engineering fill | 6d | 2026-03-05 A | 2026-03-11 A | DAM3-C-B7-S-6263, DAM3-C-B7-S-6263 FF | 100% | 2026-03-15 | 2026-03-24 | General Labour [256 h]; Truck [64 h]; Mini Roller Compactor [64 h]; Equipment Operator [256 h]; Wheel Loader [64 h]; Construction Cost [46046.2] | 46,046.19 | 46,046.19 | H1.C.K1.00.SW.F.1060 | PH1-MHR-ST-645 | 15 | 1 | 05 | 01 | 07 |
| DAM3-C-B7-S-101 |  | Anti Termite Below Footings | 1d | 2026-03-25 A | 2026-03-25 A | DAM3-C-B7-S-6273 | 100% | 2026-03-30 | 2026-03-30 | Mason [16 h]; Construction Cost [11905.5] | 11,905.55 | 11,905.55 | H1.C.K1.00.SW.F.1030 | PH1-MHR-ST-1020 | 10 | 1 | 05 | 01 | 07 |
| DAM3-C-B7-S-102 |  | Vapour Barrier for Footings | 1d | 2026-03-25 A | 2026-03-25 A | DAM3-C-B7-S-101 | 100% | 2026-03-31 | 2026-03-31 | General Labour [16 h]; Construction Cost [7940.1] | 7,940.1 | 7,940.1 | H1.C.K1.00.SW.F.1040 | PH1-MHR-ST-1080 | 15 | 1 | 05 | 01 | 07 |
| DAM3-C-B7-S-103 |  | Lean Concrete Below Footings | 2d | 2026-03-25 A | 2026-03-25 A | DAM3-C-B7-S-102 | 100% | 2026-04-01 | 2026-04-02 | Mason [32 h]; Construction Cost [8229.34] | 8,229.34 | 8,229.34 | H1.C.K1.00.SW.F.1030 | PH1-MHR-ST-1020 | 10 | 1 | 05 | 01 | 07 |
| DAM3-C-B7-S-104 |  | Rebar for Footings | 4d | 2026-04-05 A | 2026-04-09 A | DAM3-C-B7-S-103 | 100% | 2026-04-14 | 2026-04-18 | Steel Fixer [64 h]; Construction Cost [101845] | 101,844.98 | 101,844.98 |  |  |  | 1 | 05 | 01 | 07 |
| DAM3-C-B7-S-105 |  | Formwork for Footings | 4d | 2026-04-06 A | 2026-04-09 A | DAM3-C-B7-S-104, DAM3-C-B8-S-104 | 100% | 2026-04-15 | 2026-04-19 | Carperter [64 h]; Construction Cost [25461.2] | 25,461.25 | 25,461.25 |  |  |  | 1 | 05 | 01 | 07 |
| DAM3-C-B7-S-106 |  | Pouring Concrete for Footings | 1d | 2026-04-11 A | 2026-04-11 A | DAM3-C-B7-S-105 | 100% | 2026-04-19 | 2026-04-20 | Carperter [16 h]; Mason [16 h]; Steel Fixer [16 h]; Concrete Mixer [8 h]; Equipment Operator [16 h]; Construction Cost [127306] | 127,306.23 | 127,306.23 | H1.C.K1.00.RC.F.1010 | PH1-MHR-ST-1030 | 21 | 1 | 05 | 01 | 07 |
|  | 2 | **COLUMN NECK** |  | 2026-04-09 | 2026-05-10 |  |  |  |  |  |  |  |  |  |  |  |  |  |  |
| DAM3-C-B7-S-257 |  | Rebar for column neck | 4d | 2026-04-09 A | 2026-04-11 A | DAM3-C-B7-S-106 | 100% | 2026-04-22 | 2026-04-26 | Steel Fixer [64 h]; Construction Cost [14919.2] | 14,919.19 | 14,919.19 |  |  |  | 1 | 05 | 01 | 07 |
| DAM3-C-B7-S-267 |  | Formwork for column neck | 2d | 2026-04-15 A | 2026-04-15 A | DAM3-C-B7-S-257 | 100% | 2026-04-20 | 2026-04-21 | Carperter [32 h]; Construction Cost [9946.13] | 9,946.13 | 9,946.13 |  |  |  | 1 | 05 | 01 | 07 |
| DAM3-C-B7-S-297 |  | Pouring Concrete for column neck | 1d | 2026-04-16 A | 2026-04-16 A | DAM3-C-B7-S-267 | 100% | 2026-04-21 | 2026-04-22 | Mason [16 h]; Carperter [16 h]; Concrete Mixer [8 h]; Steel Fixer [16 h]; Equipment Operator [16 h]; Construction Cost [24865.3] | 24,865.31 | 24,865.31 | H1.C.K1.00.RC.F.1110 | PH1-MHR-ST-1030 | 21 | 1 | 05 | 01 | 07 |
| DAM3-C-B7-S-307 |  | Damp proof /Bitumin paint on Footings & column neck | 2d | 2026-04-20 A | 2026-04-23 A | DAM3-C-B7-S-297 | 100% | 2026-04-25 | 2026-04-26 | Painter [32 h]; Construction Cost [24777.7] | 24,777.73 | 24,777.73 | H1.C.K1.00.SW.F.1050 | PH1-MHR-ST-1080 | 15 | 1 | 05 | 01 | 07 |
| DAM3-C-B7-S-367 |  | Backfilling / Compaction up to Bottom of Grade Beams | 7d | 2026-05-02 A | 2026-05-10 A | DAM3-C-B7-S-307 | 100% | 2026-05-04 | 2026-05-11 | General Labour [256 h]; Truck [128 h]; Mini Roller Compactor [128 h]; Equipment Operator [256 h]; Wheel Loader [128 h]; Construction Cost [46046.2] | 46,046.19 | 46,046.19 | H1.C.K1.00.SW.F.1060 | PH1-MHR-ST-645 | 15 | 1 | 05 | 01 | 07 |
|  | 3 | **GRADE BEAM** |  | 2026-05-13 | 2026-05-31 |  |  |  |  |  |  |  |  |  |  |  |  |  |  |
| DAM3-C-B7-S-337 |  | Vapour barrier for Grade Beams | 2d | 2026-05-13 A | 2026-05-13 A | DAM3-C-B7-S-527 | 100% | 2026-05-17 | 2026-05-18 | General Labour [32 h]; Construction Cost [5293.4] | 5,293.4 | 5,293.4 | H1.C.K1.00.SW.F.1040 | PH1-MHR-ST-1080 | 15 | 1 | 05 | 01 | 07 |
| DAM3-C-B7-S-338 |  | Lean Concrete Below Grade Beams | 2d | 2026-05-13 A | 2026-05-13 A | DAM3-C-B7-S-337 | 100% | 2026-05-19 | 2026-05-20 | Mason [32 h]; Construction Cost [4431.19] | 4,431.19 | 4,431.19 | H1.C.K1.00.SW.F.1130 | PH1-MHR-ST-1020 | 10 | 1 | 05 | 01 | 07 |
| DAM3-C-B7-S-527 |  | Anti Termite Below Grade Beams | 1d | 2026-05-13 A | 2026-05-13 A | DAM3-C-B7-S-367 | 100% | 2026-05-16 | 2026-05-16 | Mason [16 h]; Construction Cost [11905.5] | 11,905.55 | 11,905.55 | H1.C.K1.00.SW.F.1030 | PH1-MHR-ST-1020 | 10 | 1 | 05 | 01 | 07 |
| DAM3-C-B7-S-339 |  | Rebar for Grade Beams | 5d | 2026-05-16 A | 2026-05-18 A | DAM3-C-B7-S-338 | 100% | 2026-05-18 | 2026-05-23 | Steel Fixer [80 h]; Construction Cost [27194.5] | 27,194.46 | 27,194.46 |  |  |  | 1 | 05 | 01 | 07 |
| DAM3-C-B7-S-341 |  | Anchor bolts installation | 2d | 2026-05-16 A | 2026-05-18 A | DAM3-C-B7-S-340 SS | 100% | 2026-05-23 | 2026-05-25 | Carperter [32 h]; Construction Cost [57238.8] | 57,238.83 | 57,238.83 |  |  |  | 1 | 05 | 01 | 07 |
| DAM3-C-B7-S-340 |  | Formwork for Grade Beams | 2d | 2026-05-18 A | 2026-05-19 A | DAM3-C-B7-S-339 | 100% | 2026-05-23 | 2026-05-25 | Carperter [32 h]; Construction Cost [6798.61] | 6,798.61 | 6,798.61 |  |  |  | 1 | 05 | 01 | 07 |
| DAM3-C-B7-S-342 |  | Pouring Concrete for Grade Beams | 1d | 2026-05-20 A | 2026-05-20 A | DAM3-C-B7-S-340, DAM3-C-B7-S-341 | 100% | 2026-05-23 | 2026-05-23 | Mason [16 h]; Carperter [16 h]; Concrete Mixer [8 h]; Steel Fixer [16 h]; Equipment Operator [16 h]; Construction Cost [33993.1] | 33,993.09 | 33,993.09 | H1.C.K1.00.RC.F.1110 | PH1-MHR-ST-1030 | 21 | 1 | 05 | 01 | 07 |
| DAM3-C-B7-S-347 |  | Damp proof /Bitumin paint on Grade Beams | 5d | 2026-05-23 A | 2026-05-31 A | DAM3-C-B7-S-342 | 100% | 2026-05-30 | 2026-06-03 | Painter [80 h]; Construction Cost [24777.7] | 24,777.73 | 24,777.73 | H1.C.K1.00.SW.F.1050 | PH1-MHR-ST-1080 | 15 | 1 | 05 | 01 | 07 |

| ID | WBS | Activity | Duration | Start | Finish | Predecessors | Complete | Planned start | Planned finish | Total float | Free float | Resources | Cost | Actual cost | Zone # | Phasing Code Category | Discipline | Project component code | 00 Activity ID | AMH Tender Act. ID | Tender Original Duration | project summary-4 | PS (su & rbf)-4 | New code for weekly report-4 | New discipline code-4 |
| --- | --- | --- | --- | --- | --- | --- | --- | --- | --- | --- | --- | --- | --- | --- | --- | --- | --- | --- | --- | --- | --- | --- | --- | --- | --- |
|  | 5 | **SLAB ON GRADE** |  | 2026-06-01 | 2026-11-12 |  |  |  |  |  |  |  |  |  |  |  |  |  |  |  |  |  |  |  |  |
| DAM3-C-B7-S-377 |  | Backfilling / Compaction for Slab on Grade | 7d | 2026-06-01 A | 2026-06-08 A | DAM3-C-B7-S-347 | 100% | 2026-06-06 | 2026-06-14 |  |  | Mini Roller Compactor [128 h]; General Labour [256 h]; Equipment Operator [256 h]; Wheel Loader [128 h]; Truck [128 h]; Construction Cost [23023.1] | 23,023.09 | 23,023.09 | 1 | 05 | 01 | 07 |  |  |  |  |  |  |  |
| DAM3-C-B7-S-378 |  | Anti Termite Treatment below Ground Slab | 1d | 2026-07-08 A | 2026-07-12 A | DAM3-C-B7-S-377 | 100% | 2026-07-09 | 2026-07-09 |  |  | General Labour [16 h]; Construction Cost [15874.1] | 15,874.08 | 15,874.08 | 1 | 05 | 01 | 07 | H1.C.A1.06.SW.F.1220 | PH1-MHR-ST-645 | 15 |  |  |  |  |
| DAM3-C-B7-S-379 |  | Vapour barrier for below Ground Slab | 2d | 2026-07-08 A | 2026-07-12 A | DAM3-C-B7-S-378 | 100% | 2026-07-11 | 2026-07-12 |  |  | General Labour [32 h]; Construction Cost [13233.5] | 13,233.49 | 13,233.49 | 1 | 05 | 01 | 07 |  |  |  |  |  |  |  |
| DAM3-C-B7-S-382 |  | Pouring Concrete for Ground Slab | 4d | 2026-07-08 A | 2026-07-12 A | DAM3-C-B7-S-379 | 100% | 2026-07-13 | 2026-07-16 |  |  | Mason [64 h]; Carperter [64 h]; Steel Fixer [64 h]; Concrete Mixer [32 h]; Equipment Operator [64 h]; Construction Cost [344195] | 344,195.21 | 344,195.21 | 1 | 05 | 01 | 07 | H1.C.A1.06.RC.G.1210 | PH1-MHR-ST-496 | 24 |  |  |  |  |
| DAM3-C-B7-S-517 |  | Concrete pad | 7d | 2026-11-05 | 2026-11-12 | DAM3-C-B7-A-0150 |  |  |  | 51.6d | 0d | Mason [112 h]; Construction Cost [907.11] | 907.11 |  |  | 05 | 01 | 07 |  |  |  |  |  |  |  |
|  | 4 | **COLUMNS & BEAMS** |  | 2026-05-11 | 2026-08-29 |  |  |  |  |  |  |  |  |  |  |  |  |  |  |  |  |  |  |  |  |
| DAM3-C-B7-S-6101 |  | Rebar for Tie Beams | 4d | 2026-05-11 A | 2026-05-12 A | DAM3-C-B7-S-5103 | 100% | 2026-06-28 | 2026-07-01 |  |  | Steel Fixer [64 h]; Construction Cost [7263.64] | 7,263.64 | 7,263.64 | 1 | 05 | 01 | 07 |  |  |  | 3 | 1 | 4 | 1 |
| DAM3-C-B7-S-6102 |  | Formwork for Tie Beams | 2d | 2026-05-13 A | 2026-05-13 A | DAM3-C-B7-S-6101, DAM3-C-B7-S-382 | 100% | 2026-06-22 | 2026-06-23 |  |  | Carperter [32 h]; Construction Cost [1815.91] | 1,815.91 | 1,815.91 | 1 | 05 | 01 | 07 |  |  |  | 3 | 1 | 4 | 1 |
| DAM3-C-B7-S-6103 |  | Pouring Concrete for Tie Beams | 1d | 2026-05-14 A | 2026-05-14 A | DAM3-C-B7-S-6102 | 100% | 2026-06-24 | 2026-06-24 |  |  | Mason [16 h]; Carperter [16 h]; Concrete Mixer [32 h]; Steel Fixer [16 h]; Equipment Operator [16 h]; Construction Cost [9079.54] | 9,079.54 | 9,079.54 | 1 | 05 | 01 | 07 | H1.C.K1.00.RC.F.1110 | PH1-MHR-ST-1030 | 21 | 3 | 1 | 4 | 1 |
| DAM3-C-B7-S-5102 |  | Formwork for column | 4d | 2026-06-01 A | 2026-07-07 A | DAM3-C-B7-S-5101 | 100% | 2026-07-06 | 2026-07-11 |  |  | Carperter [64 h]; Construction Cost [5036.01] | 5,036.01 | 5,036.01 | 1 | 05 | 01 | 07 |  |  |  | 3 | 1 | 4 | 1 |
| DAM3-C-B7-S-5101 |  | Rebar for column | 5d | 2026-06-25 A | 2026-07-02 A | DAM3-C-B7-S-377 | 100% | 2026-06-28 | 2026-07-02 |  |  | Steel Fixer [112 h]; Construction Cost [20144] | 20,144.05 | 20,144.05 | 1 | 05 | 01 | 07 |  |  |  | 3 | 1 | 4 | 1 |
| DAM3-C-B7-S-5103 |  | Pouring Concrete for column | 1d | 2026-07-05 A | 2026-07-22 A | DAM3-C-B7-S-5102 | 100% | 2026-07-09 | 2026-07-09 |  |  | Mason [16 h]; Carperter [16 h]; Concrete Mixer [32 h]; Steel Fixer [16 h]; Equipment Operator [16 h]; Construction Cost [25180.1] | 25,180.06 | 25,180.06 | 1 | 05 | 01 | 07 | H1.C.K1.00.RC.F.1110 | PH1-MHR-ST-1030 | 21 | 3 | 1 | 4 | 1 |
| DAM3-C-B7-S-6113 |  | Rebar for Beams | 4d | 2026-08-16 A | 2026-08-19 A | DAM3-C-B7-S-6103 | 100% | 2026-08-17 | 2026-08-20 |  |  | Steel Fixer [64 h]; Construction Cost [13379.1] | 13,379.11 | 13,379.11 | 1 | 05 | 01 | 07 |  |  |  | 3 | 1 | 4 | 1 |
| DAM3-C-B7-S-6123 |  | Formwork for Beams | 2d | 2026-08-20 A | 2026-08-26 A | DAM3-C-B7-S-6113, DAM3-C-B7-S-6113 FF | 100% | 2026-08-23 | 2026-08-24 |  |  | Carperter [32 h]; Construction Cost [3344.77] | 3,344.77 | 3,344.77 | 1 | 05 | 01 | 07 |  |  |  | 3 | 1 | 4 | 1 |
| DAM3-C-B7-S-6133 |  | Pouring Concrete for Beams | 1d | 2026-08-26 A | 2026-08-29 A | DAM3-C-B7-S-6123, DAM3-C-B7-S-6123 FF | 100% | 2026-08-27 | 2026-08-27 |  |  | Mason [16 h]; Carperter [16 h]; Concrete Mixer [32 h]; Steel Fixer [16 h]; Equipment Operator [16 h]; Construction Cost [16723.9] | 16,723.88 | 16,723.88 | 1 | 05 | 01 | 07 | H1.C.K1.00.RC.F.1110 | PH1-MHR-ST-1030 | 21 | 3 | 1 | 4 | 1 |
|  | 5 | **STRUCTURAL STEEL** |  | 2026-06-13 | 2026-11-12 |  |  |  |  |  |  |  |  |  |  |  |  |  |  |  |  |  |  |  |  |
| DAM3-C-B7-SS-0100 |  | Installation of columns | 3d | 2026-06-13 A | 2026-06-13 A | DAM3-C-B7-S-382, DAM3-C-B1-SS-0110 SS, DAM3-P-DL-A-1780, DAM3-C-B7-S-6133 | 100% | 2026-11-16 | 2026-11-18 |  |  | Structural Steel Fixer [80 h]; General Labour [80 h]; Equipment Operator [80 h]; Mobile Crane [24 h]; Construction Cost [217508] | 217,507.55 | 217,507.55 |  | 05 | 02 | 07 |  |  |  |  |  |  |  |
| DAM3-C-B7-SS-0110 |  | Installation of raft and purlins | 5d | 2026-06-14 A | 2026-06-15 A | DAM3-C-B7-SS-0100 | 100% | 2026-11-18 | 2026-11-23 |  |  | Structural Steel Fixer [160 h]; General Labour [160 h]; Mobile Crane [56 h]; Equipment Operator [160 h]; Construction Cost [326261] | 326,261.32 | 326,261.32 |  | 05 | 02 | 07 |  |  |  |  |  |  |  |
| DAM3-C-B7-SS-610 |  | Intumescent paint to steel works | 7d | 2026-06-14 A | 2026-06-21 A | DAM3-C-B7-SS-0110 | 100% | 2026-11-16 | 2026-11-23 |  |  | Painter [112 h]; Construction Cost [317760] | 317,759.56 | 317,759.56 | 1 | 05 | 02 | 07 | H1.C.A1.SA.FI.G.0730 |  |  |  |  |  |  |
| DAM3-C-B7-SS-0140 |  | Installation of roof sheet | 5d | 2026-07-07 A | 2026-07-25 A | DAM3-C-B7-A-0120, DAM3-C-B7-SS-610, DAM3-C-B7-S-6133 | 100% | 2026-10-07 | 2026-10-12 |  |  | Roof sheet worker [160 h]; General Labour [160 h]; Mobile Crane [40 h]; Equipment Operator [160 h]; Construction Cost [217508] | 217,507.55 | 217,507.55 |  | 05 | 02 | 07 |  |  |  |  |  |  |  |
| DAM3-C-B7-SS-1030 |  | Steel members for external platform | 7d | 2026-08-24 A | 2026-09-19 A | DAM3-C-B7-SS-620 | 100% | 2026-11-04 | 2026-11-11 |  |  | Construction Cost [18670.8]; General Labour [112 h]; Mobile Crane [56 h]; Structural Steel Fixer [112 h]; Equipment Operator [112 h] | 18,670.78 | 18,670.78 | 1 | 05 | 02 | 07 | H1.C.A1.SA.FI.G.0730 |  |  |  |  |  |  |
| DAM3-C-B7-SS-0130 |  | Installation of wall sandwich panel | 5d | 2026-09-01 A | 2026-09-24 A | DAM3-C-B7-A-0150, DAM3-C-B7-SS-1020 | 100% | 2026-11-14 | 2026-11-19 |  |  | Sandwich panel worker [112 h]; General Labour [112 h]; Mobile Crane [40 h]; Equipment Operator [112 h]; Construction Cost [326261] | 326,261.32 | 326,261.32 |  | 05 | 02 | 07 |  |  |  |  |  |  |  |
| DAM3-C-B7-SS-620 |  | Steel members for office area | 7d | 2026-09-21 A | 2026-09-24 A | DAM3-C-B7-SS-610, DAM3-C-B7-SS-0110 | 100% | 2026-10-29 | 2026-11-05 |  |  | Construction Cost [115805]; Structural Steel Fixer [112 h]; Mobile Crane [56 h]; General Labour [112 h]; Equipment Operator [112 h] | 115,805.2 | 115,805.2 | 1 | 05 | 02 | 07 | H1.C.A1.SA.FI.G.0730 |  |  |  |  |  |  |
| DAM3-C-B7-SS-1020 |  | Epoxy paint to steel members at office area | 7d | 2026-11-05 | 2026-11-12 | DAM3-C-B7-SS-620 |  |  |  | 34.75d | 0d | Painter [112 h]; Construction Cost [23161] | 23,161.04 |  | 1 | 05 | 02 | 07 | H1.C.A1.SA.FI.G.0730 |  |  |  |  |  |  |
| DAM3-C-B7-SS-1040 |  | Epoxy paint for external platform | 5d | 2026-11-05 | 2026-11-10 | DAM3-C-B7-SS-1030, DAM3-C-B7-SS-1030 FF |  |  |  | 51.8d | 0d | Painter [80 h]; Construction Cost [3734.16] | 3,734.16 |  | 1 | 05 | 02 | 07 | H1.C.A1.SA.FI.G.0730 |  |  |  |  |  |  |

| ID | WBS | Activity | Duration | Start | Finish | Predecessors | Complete | Remaining | Planned start | Planned finish | Total float | Free float | Resources | Cost | Actual cost | Phasing Code Category | Discipline | Project component code | Zone # | 00 Activity ID |
| --- | --- | --- | --- | --- | --- | --- | --- | --- | --- | --- | --- | --- | --- | --- | --- | --- | --- | --- | --- | --- |
|  | 2 | **ARCHITECTURAL** |  | 2026-07-01 | 2026-12-22 |  |  |  |  |  |  |  |  |  |  |  |  |  |  |  |
|  | 1 | **MASONARY WORKS** |  | 2026-07-22 | 2026-08-17 |  |  |  |  |  |  |  |  |  |  |  |  |  |  |  |
| DAM3-C-B7-A-0120 |  | Block work at factory area | 10d | 2026-07-22 A | 2026-07-26 A | DAM3-C-B7-S-382, DAM3-C-B7-SS-0110 | 100% |  | 2026-10-03 | 2026-10-13 |  |  | AAC panel erector [240 h]; General Labour [240 h]; Equipment Operator [240 h]; Mobile Crane [120 h]; Construction Cost [58338.7] | 58,338.72 | 58,338.72 | 05 | 03 | 07 |  |  |
| DAM3-C-B7-A-0150 |  | Block work at office area | 7d | 2026-07-25 A | 2026-08-17 A | DAM3-C-B7-SS-0140 SS, DAM3-C-B7-SS-620 | 100% |  | 2026-10-14 | 2026-10-21 |  |  | AAC panel erector [160 h]; General Labour [160 h]; Mobile Crane [56 h]; Equipment Operator [160 h]; Construction Cost [6179.18] | 6,179.18 | 6,179.18 | 05 | 03 | 07 |  |  |
| DAM3-C-B7-A-170 |  | Block work at toilet area | 7d | 2026-07-26 A | 2026-08-17 A | DAM3-C-B7-A-0150 | 100% |  | 2026-10-21 | 2026-10-29 |  |  | Mason [112 h]; Construction Cost [14436.3] | 14,436.31 | 14,436.31 | 05 | 03 | 07 | 1 |  |
|  | 5 | **WALL FINISHES** |  | 2026-09-03 | 2026-11-24 |  |  |  |  |  |  |  |  |  |  |  |  |  |  |  |
| DAM3-C-B7-A-180 |  | Internal Wall Plaster | 15d | 2026-09-03 A | 2026-09-24 A | DAM3-C-B7-A-170, DAM3-C-B7-E-183, DAM3-C-B7-S-517 | 100% |  | 2026-11-16 | 2026-12-03 |  |  | Mason [240 h]; Construction Cost [48590.2] | 48,590.16 | 48,590.16 | 05 | 03 | 07 | 1 | H1.C.A1.SA.FI.G.0710 |
| DAM3-C-B7-A-230 |  | Paint to Plaster (Primer, Putty & First Coat) | 4d | 2026-09-28 A | 2026-11-24 | DAM3-C-B7-A-250 | 85% | 0.6d | 2026-11-28 | 2026-12-01 | 64.4d | 0d | Painter [112 h]; Construction Cost [44167.3] | 44,167.3 | 37,542.21 | 05 | 03 | 07 | 1 | H1.C.A1.SA.FI.G.0730 |
|  | 2 | **CIELING FINISHES** |  | 2026-10-04 | 2026-11-21 |  |  |  |  |  |  |  |  |  |  |  |  |  |  |  |
| DAM3-C-B7-A-240 |  | Installation of Ceiling Gypsum Board | 5d | 2026-10-04 A | 2026-11-21 | DAM3-C-B7-A-220, DAM3-C-B7-S-517 | 50% | 2.5d | 2026-11-18 | 2026-11-23 | 56.75d | 0d | Carperter [80 h]; Construction Cost [46792.3] | 46,792.3 | 23,396.15 | 05 | 03 | 07 | 1 | H1.C.A1.SA.FI.G.0820 |
|  | 6 | **FLOOR FINISHES** |  | 2026-09-19 | 2026-12-22 |  |  |  |  |  |  |  |  |  |  |  |  |  |  |  |
| DAM3-C-B7-A-220 |  | Tiles for Toilet | 7d | 2026-09-19 A | 2026-09-28 A | DAM3-C-B7-A-370 | 100% |  | 2026-11-22 | 2026-11-30 |  |  | Tile Fixer [112 h]; Construction Cost [46530.7] | 46,530.71 | 46,530.71 | 05 | 03 | 07 | 1 | H1.C.A1.SA.FI.G.0640 |
| DAM3-C-B7-A-250 |  | Tiles for Office Area | 2d | 2026-11-21 | 2026-11-23 | DAM3-C-B7-A-240 |  |  |  |  | 56.75d | 0d | Tile Fixer [32 h]; Construction Cost [26867.3] | 26,867.31 |  | 05 | 03 | 07 |  |  |
| DAM3-C-B7-A-390 |  | Granite strip | 2d | 2026-11-23 | 2026-11-25 | DAM3-C-B7-A-558, DAM3-C-B7-A-250 |  |  |  |  | 56.75d | 0d | Tile Fixer [32 h]; Construction Cost [671.12] | 671.12 |  | 05 | 03 | 07 | 1 | H1.C.A1.SA.FI.G.0640 |
| DAM3-C-B7-A-420 |  | Epoxy paint | 7d | 2026-12-14 | 2026-12-22 | DAM3-C-B7-A-340 |  |  |  |  | 56.75d | 55.75d | Painter [112 h]; Construction Cost [115420] | 115,419.76 |  | 05 | 03 | 07 |  |  |
|  | 3 | **DOORS & WINDOWS** |  | 2026-09-21 | 2026-11-22 |  |  |  |  |  |  |  |  |  |  |  |  |  |  |  |
| DAM3-C-B7-A-558 |  | Skylight fixtures installation | 1d | 2026-09-21 A | 2026-09-26 A | DAM3-C-B7-A-557 | 100% |  | 2026-11-29 | 2026-11-29 |  |  | Carperter [16 h]; Construction Cost [6489.89] | 6,489.89 | 6,489.89 | 05 | 03 | 07 |  |  |
| DAM3-C-B7-A-552 |  | Window (CW1) | 7d | 2026-10-05 A | 2026-11-15 | DAM3-C-B7-SS-0130 | 75% | 1.75d | 2026-11-21 | 2026-11-28 | 34.75d | 0d | Carperter [112 h]; Construction Cost [94173.2] | 94,173.21 | 70,629.91 | 05 | 03 | 07 |  |  |
| DAM3-C-B7-A-553 |  | Roll up Shutter Door | 1d | 2026-11-15 | 2026-11-16 | DAM3-C-B7-A-552 |  |  |  |  | 34.75d | 0d | Carperter [16 h]; Construction Cost [68619.2] | 68,619.2 |  | 05 | 03 | 07 |  |  |
| DAM3-C-B7-A-200 |  | Supply and install (D5) 1000*2200mm single leaf steel door with door | 1d | 2026-11-16 | 2026-11-17 | DAM3-C-B7-A-553 |  |  |  |  | 34.75d | 0d | Carperter [16 h]; Construction Cost [16016.2] | 16,016.16 |  | 05 | 03 | 07 |  |  |
| DAM3-C-B7-A-554 |  | Supply and install (D4) 800*2200 mm single leaf aluminum door with door | 1d | 2026-11-17 | 2026-11-18 | DAM3-C-B7-A-200 |  |  |  |  | 34.75d | 0d | Carperter [16 h]; Construction Cost [22737.8] | 22,737.85 |  | 05 | 03 | 07 |  |  |
| DAM3-C-B7-A-555 |  | Supply and install (D7) 1000*2200 mm single leaf aluminum door with door | 1d | 2026-11-18 | 2026-11-19 | DAM3-C-B7-A-554 |  |  |  |  | 34.75d | 0d | Carperter [16 h]; Construction Cost [7811.07] | 7,811.07 |  | 05 | 03 | 07 |  |  |
| DAM3-C-B7-A-556 |  | Supply and install (D3) 1000*2200 mm single leaf aluminum door with door | 1d | 2026-11-19 | 2026-11-21 | DAM3-C-B7-A-555 |  |  |  |  | 34.75d | 0d | Carperter [16 h]; Construction Cost [16016.2] | 16,016.16 |  | 05 | 03 | 07 |  |  |
| DAM3-C-B7-A-557 |  | Supply and install fire rated 45 min (D2) 1200*2200 mm single leaf steel door | 1d | 2026-11-21 | 2026-11-22 | DAM3-C-B7-A-556 |  |  |  |  | 34.75d | 0d | Carperter [16 h]; Construction Cost [16711.5] | 16,711.52 |  | 05 | 03 | 07 |  |  |

| ID | WBS | Activity | Duration | Start | Finish | Predecessors | Complete | Remaining | Planned start | Planned finish | Total float | Free float | Resources | Cost | Actual cost | Phasing Code Category | Discipline | Project component code | Ordinal Start | Ordinal Finish | 00 Activity ID | Ordinal Duration | Zone # |
| --- | --- | --- | --- | --- | --- | --- | --- | --- | --- | --- | --- | --- | --- | --- | --- | --- | --- | --- | --- | --- | --- | --- | --- |
|  | 4 | **WATER PROOFING WORKS** |  | 2026-11-14 | 2026-11-17 |  |  |  |  |  |  |  |  |  |  |  |  |  |  |  |  |  |  |
| DAM3-C-B7-A-370 |  | Waterproofing membrane for toilets | 4d | 2026-11-14 | 2026-11-17 | DAM3-C-B7-M-200, DAM3-C-B7-A-180 |  |  |  |  | 56.75d | 0d | General Labour [64 h]; Construction Cost [4879.02] | 4,879.02 |  | 05 | 03 | 07 |  |  |  |  |  |
|  | 7 | **METAL WORKS** |  | 2026-07-01 | 2026-12-03 |  |  |  |  |  |  |  |  |  |  |  |  |  |  |  |  |  |  |
| DAM3-C-B7-A-300 |  | Galvanised Steel Gratings | 2d | 2026-07-01 A | 2026-07-01 A | DAM3-C-B7-A-292 | 100% |  | 2026-12-27 | 2026-12-28 |  |  | Steel Fixer [32 h]; General Labour [32 h]; Construction Cost [6455.16] | 6,455.16 | 6,455.16 | 05 | 03 | 07 |  |  |  |  |  |
| DAM3-C-B7-A-292 |  | Aluminium composite panel | 5d | 2026-09-30 A | 2026-12-03 | DAM3-C-B7-A-291 | 75% | 1.25d | 2026-12-13 | 2026-12-19 | 56.75d | 0d | Steel Fixer [80 h]; General Labour [80 h]; Construction Cost [175889] | 175,888.76 | 131,916.57 | 05 | 03 | 07 |  |  |  |  |  |
| DAM3-C-B7-A-290 |  | Steel Ladder | 2d | 2026-11-25 | 2026-11-28 | DAM3-C-B7-A-390 |  |  |  |  | 56.75d | 0d | Steel Fixer [32 h]; General Labour [32 h]; Construction Cost [9839.16] | 9,839.16 |  | 05 | 03 | 07 |  |  |  |  |  |
| DAM3-C-B7-A-291 |  | Steel railing works | 4d | 2026-11-28 | 2026-12-02 | DAM3-C-B7-A-290 |  |  |  |  | 56.75d | 0d | Steel Fixer [64 h]; General Labour [64 h]; Construction Cost [1533.98] | 1,533.98 |  | 05 | 03 | 07 |  |  |  |  |  |
|  | 8 | **SPECIALTIES** |  | 2026-12-03 | 2026-12-14 |  |  |  |  |  |  |  |  |  |  |  |  |  |  |  |  |  |  |
| DAM3-C-B7-A-320 |  | Installation of fittings | 5d | 2026-12-03 | 2026-12-09 | DAM3-C-B7-A-300 |  |  |  |  | 56.75d | 0d | Plumber [80 h]; Construction Cost [22981.3] | 22,981.27 |  | 05 | 03 | 07 |  |  |  |  |  |
| DAM3-C-B7-A-570 |  | Identification sign; ID01 & ID02 | 3d | 2026-12-09 | 2026-12-13 | DAM3-C-B7-A-320 |  |  |  |  | 56.75d | 0d | Mason [48 h]; Construction Cost [9630.56] | 9,630.56 |  | 05 | 03 | 07 |  |  |  |  |  |
| DAM3-C-B7-A-340 |  | Furniture Installation | 1d | 2026-12-13 | 2026-12-14 | DAM3-C-B7-A-570 |  |  |  |  | 56.75d | 0d | General Labour [16 h]; Mason [16 h]; Construction Cost [12468.8] | 12,468.83 |  | 05 | 03 | 07 |  |  |  |  |  |
|  | 3 | **MECHANICAL** |  | 2026-06-10 | 2026-12-08 |  |  |  |  |  |  |  |  |  |  |  |  |  |  |  |  |  |  |
|  | 1 | **HVAC** |  | 2026-10-05 | 2026-12-05 |  |  |  |  |  |  |  |  |  |  |  |  |  |  |  |  |  |  |
|  | 1 | **FIRST STAGE** |  | 2026-10-05 | 2026-10-11 |  |  |  |  |  |  |  |  |  |  |  |  |  |  |  |  |  |  |
| DAM3-C-B7-M-140 |  | Installation of HVAC Ducts | 2d | 2026-10-05 A | 2026-10-11 A | DAM3-C-B7-M-160 | 100% |  | 2026-12-10 | 2026-12-12 |  |  | Ductman [32 h]; Construction Cost [149489] | 149,489.33 | 149,489.33 | 05 | 04 | 07 | 0 | 0 | H1.C.A1.0A.MH.G.1040 | 0 | 1 |
| DAM3-C-B7-M-170 |  | Installation of Duct insulation | 2d | 2026-10-06 A | 2026-10-11 A | DAM3-C-B7-M-140 | 100% |  | 2026-12-15 | 2026-12-16 |  |  | Ductman [32 h]; Construction Cost [21205.4] | 21,205.4 | 21,205.4 | 05 | 04 | 07 |  |  |  |  |  |
|  | 2 | **SECOND STAGE** |  | 2026-11-24 | 2026-12-05 |  |  |  |  |  |  |  |  |  |  |  |  |  |  |  |  |  |  |
| DAM3-C-B7-M-130 |  | Installation of Exhaust Fans | 2d | 2026-11-24 | 2026-11-26 | DAM3-C-B7-A-230 |  |  |  |  | 64.4d | 0d | AC Technician [32 h]; Construction Cost [7938.56] | 7,938.56 |  | 05 | 04 | 07 | 0 | 0 | H1.C.A1.0A.MH.X.4050 | 0 | 1 |
| DAM3-C-B7-M-160 |  | Installation of Wall Propeller Type Exhaust Fan | 3d | 2026-11-26 | 2026-11-30 | DAM3-C-B7-M-130 |  |  |  |  | 64.4d | 0d | AC Technician [64 h]; Construction Cost [46831.6] | 46,831.64 |  | 05 | 04 | 07 |  |  |  |  |  |
| DAM3-C-B7-M-339 |  | Installation of Diffuser | 2d | 2026-11-30 | 2026-12-02 | DAM3-C-B7-M-170 |  |  |  |  | 64.4d | 0d | Ductman [32 h]; Construction Cost [2144] | 2,144 |  | 05 | 04 | 07 | 0 | 0 | H1.C.A1.0A.MH.G.3010 | 0 | 1 |
| DAM3-C-B7-M-340 |  | Supply, install, test and commission door grilles & exhaust louvers | 2d | 2026-12-02 | 2026-12-05 | DAM3-C-B7-M-339 |  |  |  |  | 64.4d | 0d | Ductman [32 h]; Construction Cost [5574.4] | 5,574.4 |  | 05 | 04 | 07 | 0 | 0 | H1.C.A1.0A.MH.G.3010 | 0 | 1 |
|  | 2 | **FIRE FIGHTING SYSTEM** |  | 2026-07-29 | 2026-12-08 |  |  |  |  |  |  |  |  |  |  |  |  |  |  |  |  |  |  |
|  | 1 | **FIRST STAGE** |  | 2026-07-29 | 2026-08-12 |  |  |  |  |  |  |  |  |  |  |  |  |  |  |  |  |  |  |
| DAM3-C-B7-M-300 |  | Installation of Fire Fighting Pipes (Seamless Black Steel) | 7d | 2026-07-29 A | 2026-08-10 A | DAM3-C-B7-A-230 | 100% |  | 2026-12-19 | 2026-12-27 |  |  | Pipe Fitter [112 h]; Construction Cost [72394.8] | 72,394.75 | 72,394.75 | 05 | 04 | 07 | 0 | 0 | H1.C.A1.0A.MF.G.1010 | 0 | 1 |
| DAM3-C-B7-M-310 |  | Installation of Fire Fighting Valve | 5d | 2026-08-09 A | 2026-08-12 A | DAM3-C-B7-M-300 | 100% |  | 2027-01-02 | 2027-01-06 |  |  | Pipe Fitter [80 h]; Construction Cost [12199.4] | 12,199.4 | 12,199.4 | 05 | 04 | 07 | 0 | 0 | H1.C.A1.0A.MF.G.2010 | 0 | 1 |

| ID | WBS | Activity | Duration | Start | Finish | Predecessors | Complete | Remaining | Planned start | Planned finish | Total float | Free float | Resources | Cost | Actual cost | Ordinal Start | Ordinal Finish | 00 Activity ID | Ordinal Duration | Zone # | Phasing Code Category | Discipline | Project component code |
| --- | --- | --- | --- | --- | --- | --- | --- | --- | --- | --- | --- | --- | --- | --- | --- | --- | --- | --- | --- | --- | --- | --- | --- |
|  | 2 | **SECOND STAGE** |  | 2026-11-24 | 2026-12-08 |  |  |  |  |  |  |  |  |  |  |  |  |  |  |  |  |  |  |
| DAM3-C-B7-M-320 |  | Installation of Fire Hose Cabinet | 3d | 2026-11-24 | 2026-11-28 | DAM3-C-B7-M-310 |  |  |  |  | 74.4d | 71.9d | Pipe Fitter [48 h]; Construction Cost [15158.6] | 15,158.56 |  | 0 | 0 | H1.C.A1.0A.MF.G.3010 | 0 | 1 | 05 | 04 | 07 |
| DAM3-C-B7-M-370 |  | Supply, install, test and commission Fire Department Connection(FDC) | 3d | 2026-12-05 | 2026-12-08 | DAM3-C-B7-M-340 |  |  |  |  | 64.4d | 0d | Pipe Fitter [48 h]; Construction Cost [2706.06] | 2,706.06 |  | 0 | 0 | H1.C.A1.0A.MF.G.3010 | 0 | 1 | 05 | 04 | 07 |
|  | 3 | **SEWER AND DRAINAGE SYSTEM** |  | 2026-06-10 | 2026-12-06 |  |  |  |  |  |  |  |  |  |  |  |  |  |  |  |  |  |  |
|  | 1 | **FIRST STAGE** |  | 2026-06-10 | 2026-11-19 |  |  |  |  |  |  |  |  |  |  |  |  |  |  |  |  |  |  |
| DAM3-C-B7-M-200 |  | Installation of Sanitary Waste / Drainage Pipes | 4d | 2026-06-10 A | 2026-06-14 A | DAM3-C-B7-S-347 | 100% |  | 2026-06-17 | 2026-06-21 |  |  | Plumber [64 h]; Construction Cost [18585.1] | 18,585.14 | 18,585.14 | 0 | 0 | H1.C.K1.00.MP.G.1020 | 0 | 1 | 05 | 04 | 07 |
| DAM3-C-B7-M-380 |  | Installation of Trench drain | 5d | 2026-06-16 A | 2026-06-18 A | DAM3-C-B7-M-220 | 100% |  | 2026-12-08 | 2026-12-14 |  |  | Plumber [80 h]; Construction Cost [11508.8] | 11,508.8 | 11,508.8 |  |  |  |  |  | 05 | 04 | 07 |
| DAM3-C-B7-M-220 |  | Installation of Floor Drain | 2d | 2026-11-18 | 2026-11-19 | DAM3-C-B7-M-200, DAM3-C-B7-A-220 |  |  |  |  | 61.5d | 0d | Plumber [32 h]; Construction Cost [11056] | 11,055.96 |  |  |  |  |  | 1 | 05 | 04 | 07 |
|  | 2 | **SECOND STAGE** |  | 2026-11-21 | 2026-12-06 |  |  |  |  |  |  |  |  |  |  |  |  |  |  |  |  |  |  |
| DAM3-C-B7-M-180 |  | Installation of Electric Water Heater | 2d | 2026-11-21 | 2026-11-22 | DAM3-C-B7-M-380 |  |  |  |  | 61.5d | 0d | Plumber [32 h]; Construction Cost [1819.51] | 1,819.51 |  | 0 | 0 | H1.C.K1.00.MP.G.1030 | 0 | 1 | 05 | 04 | 07 |
| DAM3-C-B7-M-190 |  | Installation of Sanitary Fixture and Accessories | 4d | 2026-11-23 | 2026-11-26 | DAM3-C-B7-M-180 |  |  |  |  | 61.5d | 0d | Plumber [64 h]; Construction Cost [19921.7] | 19,921.72 |  | 0 | 0 | H1.C.K1.00.MP.G.2040 | 0 | 1 | 05 | 04 | 07 |
| DAM3-C-B7-M-210 |  | Installation of Lavotary /Wash Basin | 2d | 2026-11-28 | 2026-11-29 | DAM3-C-B7-M-180, DAM3-C-B7-M-190 |  |  |  |  | 61.5d | 0d | Plumber [32 h]; Construction Cost [21416.7] | 21,416.68 |  |  |  |  |  | 1 | 05 | 04 | 07 |
| DAM3-C-B7-M-270 |  | Installation of Bib Tap | 2d | 2026-11-30 | 2026-12-01 | DAM3-C-B7-M-190, DAM3-C-B7-M-210 |  |  |  |  | 61.5d | 0d | Plumber [32 h]; Construction Cost [1900.66] | 1,900.66 |  |  |  |  |  |  | 05 | 04 | 07 |
| DAM3-C-B7-M-428 |  | Installation of Water Tap | 2d | 2026-12-02 | 2026-12-03 | DAM3-C-B7-M-210, DAM3-C-B7-M-270 |  |  |  |  | 61.5d | 0d | Plumber [32 h]; Construction Cost [2874.14] | 2,874.14 |  |  |  |  |  |  | 05 | 04 | 07 |
| DAM3-C-B7-M-429 |  | Installation of Roof Vent Cap | 2d | 2026-12-05 | 2026-12-06 | DAM3-C-B7-M-428 |  |  |  |  | 61.5d | 51.9d | Pipe Fitter [32 h]; Construction Cost [927.12] | 927.12 |  |  |  |  |  |  | 05 | 04 | 07 |
|  | 4 | **WATER SUPPLY SYSTEM** |  | 2026-08-30 | 2026-11-30 |  |  |  |  |  |  |  |  |  |  |  |  |  |  |  |  |  |  |
|  | 1 | **FIRST STAGE** |  | 2026-08-30 | 2026-09-03 |  |  |  |  |  |  |  |  |  |  |  |  |  |  |  |  |  |  |
| DAM3-C-B7-M-290 |  | Installation of Water Supply Pipes | 4d | 2026-08-30 A | 2026-09-03 A | DAM3-C-B7-A-230 | 100% |  | 2027-01-06 | 2027-01-11 |  |  | Plumber [64 h]; Construction Cost [23318.4] | 23,318.41 | 23,318.41 | 0 | 0 | H1.C.K1.00.MP.G.1010 | 0 | 1 | 05 | 04 | 07 |
| DAM3-C-B7-M-280 |  | Installation of Water Supply Valve | 2d | 2026-08-31 A | 2026-09-03 A | DAM3-C-B7-M-290 | 100% |  | 2027-01-02 | 2027-01-04 |  |  | Plumber [32 h]; Construction Cost [18274.3] | 18,274.27 | 18,274.27 | 0 | 0 | H1.C.K1.00.MP.G.2010 | 0 | 1 | 05 | 04 | 07 |
|  | 2 | **SECOND STAGE** |  | 2026-11-24 | 2026-11-30 |  |  |  |  |  |  |  |  |  |  |  |  |  |  |  |  |  |  |
| DAM3-C-B7-M-330 |  | Capped connection | 5d | 2026-11-24 | 2026-11-30 | DAM3-C-B7-M-280 |  |  |  |  | 67.4d | 63.9d | Plumber [80 h]; Construction Cost [278.13] | 278.13 |  |  |  |  |  |  | 05 | 04 | 07 |
|  | 4 | **ELECTRICAL** |  | 2026-05-16 | 2026-12-17 |  |  |  |  |  |  |  |  |  |  |  |  |  |  |  |  |  |  |
|  | 1 | **FIRST STAGE** |  | 2026-05-16 | 2026-12-12 |  |  |  |  |  |  |  |  |  |  |  |  |  |  |  |  |  |  |
| DAM3-C-B7-E-113 |  | Installation of Earthing and Grounding | 5d | 2026-05-16 A | 2026-12-12 | DAM3-C-B7-E-223 | 90% | 0.5d | 2027-01-20 | 2027-01-25 | 40.25d | 33.25d | Electrician [80 h]; Construction Cost [19646.5] | 19,646.47 | 17,681.82 |  |  | H1.C.K1.00.EM.G.2040 |  | 1 | 05 | 05 | 07 |
| DAM3-C-B7-E-143 |  | Installation of Conduits and wiring outlets - Fire Alarm System | 4d | 2026-05-16 A | 2026-11-07 | DAM3-C-B7-A-170 | 50% | 2d | 2026-12-16 | 2026-12-20 | 39.1d | 0d | Electrician [64 h]; Construction Cost [1768.31] | 1,768.31 | 884.15 |  |  | H1.C.K1.00.EL.G.1020 |  | 1 | 05 | 05 | 07 |
| DAM3-C-B7-E-183 |  | Installation of Sleeves & Power outlet | 8d | 2026-05-18 A | 2026-11-09 | DAM3-C-B7-A-170 | 50% | 4d | 2026-12-15 | 2026-12-23 | 59.75d | 3d | Electrician [128 h]; Construction Cost [2920.45] | 2,920.45 | 1,460.23 |  |  |  |  | 1 | 05 | 05 | 07 |
| DAM3-C-B7-E-163 |  | Installation of Conduites for Lighting Fixture | 4d | 2026-09-06 A | 2026-11-17 | DAM3-C-B7-E-133 | 90% | 0.4d | 2026-11-14 | 2026-11-18 | 39.1d | 4.35d | Electrician [64 h]; Construction Cost [8462.97] | 8,462.97 | 7,616.67 |  |  | H1.C.K1.00.EM.G.2030 |  | 1 | 05 | 05 | 07 |
| DAM3-C-B7-E-233 |  | Installation of Wires | 4d | 2026-11-22 | 2026-11-26 | DAM3-C-B7-E-163, DAM3-C-B7-A-558 |  |  |  |  | 34.75d | 0d | Electrician [64 h]; Construction Cost [16925.9] | 16,925.94 |  |  |  |  |  |  | 05 | 05 | 07 |
| DAM3-C-B7-E-223 |  | Installation of LV Cables | 4d | 2026-12-06 | 2026-12-10 | DAM3-C-B7-E-213 |  |  |  |  | 40.25d | 0d | Electrician [64 h]; Construction Cost [36390] | 36,389.98 |  |  |  |  |  |  | 05 | 05 | 07 |

| ID | WBS | Activity | Duration | Start | Finish | Predecessors | Complete | Remaining | Planned start | Planned finish | Total float | Free float | Resources | Cost | Actual cost | 00 Activity ID | Zone # | Phasing Code Category | Discipline | Project component code | AMH Tender Act. ID | Tender Original Duration |
| --- | --- | --- | --- | --- | --- | --- | --- | --- | --- | --- | --- | --- | --- | --- | --- | --- | --- | --- | --- | --- | --- | --- |
|  | 2 | **SECOND STAGE** |  | 2026-09-21 | 2026-12-17 |  |  |  |  |  |  |  |  |  |  |  |  |  |  |  |  |  |
| DAM3-C-B7-E-153 |  | Installation of Lighting fixtures | 4d | 2026-09-21 A | 2026-11-30 | DAM3-C-B7-E-233 | 30% | 2.8d | 2026-12-03 | 2026-12-08 | 38.95d | 4.2d | Electrician [64 h]; Construction Cost [76166.7] | 76,166.74 | 22,850.02 | H1.C.K1.00.EM.G.3010 | 1 | 05 | 05 | 07 |  |  |
| DAM3-C-B7-E-420 |  | Installation of Solar power plant | 7d | 2026-10-04 A | 2026-10-06 A | DAM3-C-B1-E-420, DAM3-C-B7-E-303, DAM3-C-B7-E-113 | 100% |  | 2027-01-23 | 2027-01-31 |  |  | Plumber [112 h]; Construction Cost [253269] | 253,268.71 | 253,268.71 |  |  | 05 | 05 | 07 |  |  |
| DAM3-C-B7-E-123 |  | Installation of Fire Alarm Control Panel | 4d | 2026-11-08 | 2026-11-11 | DAM3-C-B7-E-143 |  |  |  |  | 39.1d | 0d | Electrician [64 h]; Construction Cost [19451.4] | 19,451.37 |  | H1.C.K1.00.EL.X.4120 | 1 | 05 | 05 | 07 |  |  |
| DAM3-C-B7-E-133 |  | Installation of Fire Detectors & Accessories | 4d | 2026-11-12 | 2026-11-16 | DAM3-C-B7-E-123 |  |  |  |  | 39.1d | 0d | Electrician [64 h]; Construction Cost [56740.4] | 56,740.37 |  | H1.C.K1.00.EL.G.3020 | 1 | 05 | 05 | 07 |  |  |
| DAM3-C-B7-E-173 |  | Installation of Wiring Devices | 4d | 2026-11-24 | 2026-11-29 | DAM3-C-B7-E-183, DAM3-C-B7-A-230 |  |  |  |  | 66.4d | 0d | Electrician [64 h]; Construction Cost [19435.1] | 19,435.09 |  | H1.C.K1.00.EM.G.3020 | 1 | 05 | 05 | 07 |  |  |
| DAM3-C-B7-E-193 |  | Installation of Main Distribution Board | 2d | 2026-11-26 | 2026-11-29 | DAM3-C-B7-E-233 |  |  |  |  | 40.25d | 0d | Electrician [32 h]; Construction Cost [32472.7] | 32,472.73 |  | H1.C.K1.00.EM.G.2020 | 1 | 05 | 05 | 07 |  |  |
| DAM3-C-B7-E-410 |  | Installation of CCTV System | 7d | 2026-11-26 | 2026-12-05 | DAM3-C-B7-E-233 |  |  |  |  | 34.75d | 0d | Plumber [112 h]; Construction Cost [76349.2] | 76,349.24 |  |  |  | 05 | 05 | 07 |  |  |
| DAM3-C-B7-E-203 |  | Installation of Disconnect Switches | 2d | 2026-11-29 | 2026-12-01 | DAM3-C-B7-E-173 |  |  |  |  | 66.4d | 55.9d | Electrician [32 h]; Construction Cost [30236] | 30,235.95 |  |  |  | 05 | 05 | 07 |  |  |
| DAM3-C-B7-E-243 |  | Installation of LP-1 Panel | 2d | 2026-11-29 | 2026-12-01 | DAM3-C-B7-E-193 |  |  |  |  | 40.25d | 0d | Electrician [32 h]; Construction Cost [18403.5] | 18,403.54 |  | H1.C.K1.00.EM.G.2020 | 1 | 05 | 05 | 07 |  |  |
| DAM3-C-B7-E-253 |  | Installation of PP-AC panel | 2d | 2026-12-01 | 2026-12-03 | DAM3-C-B7-E-243 |  |  |  |  | 40.25d | 0d | Electrician [32 h]; Construction Cost [21648.5] | 21,648.48 |  | H1.C.K1.00.EM.G.2020 | 1 | 05 | 05 | 07 |  |  |
| DAM3-C-B7-E-213 |  | Installation of Telephone Cabinet | 2d | 2026-12-03 | 2026-12-06 | DAM3-C-B7-E-253 |  |  |  |  | 40.25d | 0d | Electrician [32 h]; Construction Cost [26991.1] | 26,991.08 |  |  | 1 | 05 | 05 | 07 |  |  |
| DAM3-C-B7-E-273 |  | Installation of Access Control System | 5d | 2026-12-05 | 2026-12-10 | DAM3-C-B7-E-410, DAM3-C-B7-E-153 |  |  |  |  | 34.75d | 0d | Electrician [80 h]; Construction Cost [27616.9] | 27,616.86 |  | H1.C.K1.00.EM.G.2040 | 1 | 05 | 05 | 07 |  |  |
| DAM3-C-B7-E-283 |  | Monitor Modules for Fire Alarm | 2d | 2026-12-10 | 2026-12-13 | DAM3-C-B7-E-273 |  |  |  |  | 34.75d | 0d | Electrician [32 h]; Construction Cost [3882.38] | 3,882.38 |  | H1.C.K1.00.EM.G.2040 | 1 | 05 | 05 | 07 |  |  |
| DAM3-C-B7-E-293 |  | Line Isolator Modules for Fire Alarm | 2d | 2026-12-13 | 2026-12-15 | DAM3-C-B7-E-283, DAM3-C-B7-E-213 |  |  |  |  | 34.75d | 0d | Electrician [32 h]; Construction Cost [185.4] | 185.4 |  | H1.C.K1.00.EM.G.2040 | 1 | 05 | 05 | 07 |  |  |
| DAM3-C-B7-E-303 |  | Firewarning flash light with sounder; wall mounted, Weather proof | 2d | 2026-12-15 | 2026-12-17 | DAM3-C-B7-E-293 |  |  |  |  | 34.75d | 27.75d | Electrician [32 h]; Construction Cost [3082.69] | 3,082.69 |  | H1.C.K1.00.EM.G.2040 | 1 | 05 | 05 | 07 |  |  |
|  | 9 | **BLOCK B8** |  | 2026-02-17 | 2027-02-23 |  |  |  |  |  |  |  |  |  |  |  |  |  |  |  |  |  |
|  | 1 | **STRUCTURAL** |  | 2026-02-17 | 2026-11-12 |  |  |  |  |  |  |  |  |  |  |  |  |  |  |  |  |  |
|  | 1 | **FOOTING** |  | 2026-02-17 | 2026-04-16 |  |  |  |  |  |  |  |  |  |  |  |  |  |  |  |  |  |
| DAM3-C-B8-S-150 |  | Excavation for footings | 4d | 2026-02-17 A | 2026-02-21 A | DAM3-C-B7-S-150 | 100% |  | 2026-03-23 | 2026-03-28 |  |  | General Labour [112 h]; Equipment Operator [112 h]; Truck [64 h]; Excavator [64 h]; Mini Roller Compactor [64 h]; Construction Cost [89859.6] | 89,859.61 | 89,859.61 | H1.C.K1.00.SW.F.1010 | 1 | 05 | 01 | 08 | PH1-MHR-ST-640 | 12 |
| DAM3-C-B8-S-6283 |  | Soil replacement - rock fill | 4d | 2026-02-28 A | 2026-03-02 A | DAM3-C-B8-S-150 | 100% |  | 2026-03-21 | 2026-03-24 |  |  | General Labour [256 h]; Truck [128 h]; Mini Roller Compactor [128 h]; Equipment Operator [256 h]; Wheel Loader [128 h]; Construction Cost [179062] | 179,061.91 | 179,061.91 | H1.C.K1.00.SW.F.1060 | 1 | 05 | 01 | 08 | PH1-MHR-ST-645 | 15 |
| DAM3-C-B8-S-6293 |  | Engineering fill | 4d | 2026-03-08 A | 2026-03-16 A | DAM3-C-B8-S-6283, DAM3-C-B8-S-6283 FF | 100% |  | 2026-03-16 | 2026-03-23 |  |  | General Labour [256 h]; Truck [64 h]; Mini Roller Compactor [64 h]; Equipment Operator [256 h]; Wheel Loader [64 h]; Construction Cost [46046.2] | 46,046.19 | 46,046.19 | H1.C.K1.00.SW.F.1060 | 1 | 05 | 01 | 08 | PH1-MHR-ST-645 | 15 |
| DAM3-C-B8-S-101 |  | Anti Termite Below Footings | 1d | 2026-03-28 A | 2026-03-28 A | DAM3-C-B8-S-6293 | 100% |  | 2026-03-31 | 2026-03-31 |  |  | Mason [16 h]; Construction Cost [11905.5] | 11,905.55 | 11,905.55 | H1.C.K1.00.SW.F.1030 | 1 | 05 | 01 | 08 | PH1-MHR-ST-1020 | 10 |
| DAM3-C-B8-S-102 |  | Vapour Barrier for Footings | 1d | 2026-03-28 A | 2026-03-28 A | DAM3-C-B8-S-101 | 100% |  | 2026-04-01 | 2026-04-01 |  |  | General Labour [16 h]; Construction Cost [7940.1] | 7,940.1 | 7,940.1 | H1.C.K1.00.SW.F.1040 | 1 | 05 | 01 | 08 | PH1-MHR-ST-1080 | 15 |
| DAM3-C-B8-S-103 |  | Lean Concrete Below Footings | 2d | 2026-03-28 A | 2026-03-28 A | DAM3-C-B8-S-102 | 100% |  | 2026-04-02 | 2026-04-04 |  |  | Mason [32 h]; Construction Cost [8229.34] | 8,229.34 | 8,229.34 | H1.C.K1.00.SW.F.1030 | 1 | 05 | 01 | 08 | PH1-MHR-ST-1020 | 10 |
| DAM3-C-B8-S-104 |  | Rebar for Footings | 4d | 2026-04-11 A | 2026-04-13 A | DAM3-C-B8-S-103 | 100% |  | 2026-04-13 | 2026-04-16 |  |  | Steel Fixer [64 h]; Construction Cost [101845] | 101,844.98 | 101,844.98 |  | 1 | 05 | 01 | 08 |  |  |
| DAM3-C-B8-S-105 |  | Formwork for Footings | 4d | 2026-04-13 A | 2026-04-14 A | DAM3-C-B8-S-104, DAM3-PMS-MMS-0060 | 100% |  | 2026-05-21 | 2026-05-25 |  |  | Carperter [64 h]; Construction Cost [25461.2] | 25,461.25 | 25,461.25 |  | 1 | 05 | 01 | 08 |  |  |
| DAM3-C-B8-S-106 |  | Pouring Concrete for Footings | 1d | 2026-04-16 A | 2026-04-16 A | DAM3-C-B8-S-105 | 100% |  | 2026-05-25 | 2026-05-25 |  |  | Carperter [16 h]; Mason [16 h]; Steel Fixer [16 h]; Concrete Mixer [8 h]; Equipment Operator [16 h]; Construction Cost [127306] | 127,306.23 | 127,306.23 | H1.C.K1.00.RC.F.1010 | 1 | 05 | 01 | 08 | PH1-MHR-ST-1030 | 21 |

| ID | WBS | Activity | Duration | Start | Finish | Predecessors | Complete | Planned start | Planned finish | Total float | Free float | Resources | Cost | Actual cost | Zone # | Phasing Code Category | Discipline | Project component code | 00 Activity ID | AMH Tender Act. ID | Tender Original Duration | project summary-4 | PS (su & rbf)-4 | New code for weekly report-4 | New discipline code-4 |
| --- | --- | --- | --- | --- | --- | --- | --- | --- | --- | --- | --- | --- | --- | --- | --- | --- | --- | --- | --- | --- | --- | --- | --- | --- | --- |
|  | 2 | **COLUMN NECK** |  | 2026-04-14 | 2026-05-12 |  |  |  |  |  |  |  |  |  |  |  |  |  |  |  |  |  |  |  |  |
| DAM3-C-B8-S-257 |  | Rebar for column neck | 4d | 2026-04-14 A | 2026-04-15 A | DAM3-C-B8-S-106 | 100% | 2026-05-24 | 2026-06-01 |  |  | Steel Fixer [64 h]; Construction Cost [14919.2] | 14,919.19 | 14,919.19 | 1 | 05 | 01 | 08 |  |  |  |  |  |  |  |
| DAM3-C-B8-S-267 |  | Formwork for column neck | 2d | 2026-04-22 A | 2026-04-25 A | DAM3-C-B8-S-257 | 100% | 2026-06-01 | 2026-06-02 |  |  | Carperter [32 h]; Construction Cost [9946.13] | 9,946.13 | 9,946.13 | 1 | 05 | 01 | 08 |  |  |  |  |  |  |  |
| DAM3-C-B8-S-297 |  | Pouring Concrete for column neck | 1d | 2026-04-23 A | 2026-04-25 A | DAM3-C-B8-S-267 | 100% | 2026-06-03 | 2026-06-03 |  |  | Mason [16 h]; Carperter [16 h]; Concrete Mixer [8 h]; Steel Fixer [16 h]; Equipment Operator [16 h]; Construction Cost [24865.3] | 24,865.31 | 24,865.31 | 1 | 05 | 01 | 08 | H1.C.K1.00.RC.F.1110 | PH1-MHR-ST-1030 | 21 |  |  |  |  |
| DAM3-C-B8-S-307 |  | Damp proof /Bitumin paint on Footings & column neck | 2d | 2026-04-27 A | 2026-04-30 A | DAM3-C-B8-S-297 | 100% | 2026-06-07 | 2026-06-08 |  |  | Painter [32 h]; Construction Cost [24777.7] | 24,777.73 | 24,777.73 | 1 | 05 | 01 | 08 | H1.C.K1.00.SW.F.1050 | PH1-MHR-ST-1080 | 15 |  |  |  |  |
| DAM3-C-B8-S-367 |  | Backfilling / Compaction up to Bottom of Grade Beams | 7d | 2026-05-05 A | 2026-05-12 A | DAM3-C-B8-S-307 | 100% | 2026-06-09 | 2026-06-16 |  |  | General Labour [256 h]; Truck [128 h]; Mini Roller Compactor [128 h]; Equipment Operator [256 h]; Wheel Loader [128 h]; Construction Cost [46046.2] | 46,046.19 | 46,046.19 | 1 | 05 | 01 | 08 | H1.C.K1.00.SW.F.1060 | PH1-MHR-ST-645 | 15 |  |  |  |  |
|  | 3 | **GRADE BEAM** |  | 2026-05-13 | 2026-06-03 |  |  |  |  |  |  |  |  |  |  |  |  |  |  |  |  |  |  |  |  |
| DAM3-C-B8-S-337 |  | Vapour barrier for Grade Beams | 2d | 2026-05-13 A | 2026-05-13 A | DAM3-C-B8-S-527 | 100% | 2026-09-16 | 2026-09-17 |  |  | General Labour [32 h]; Construction Cost [5293.4] | 5,293.4 | 5,293.4 | 1 | 05 | 01 | 08 | H1.C.K1.00.SW.F.1040 | PH1-MHR-ST-1080 | 15 |  |  |  |  |
| DAM3-C-B8-S-338 |  | Lean Concrete Below Grade Beams | 2d | 2026-05-13 A | 2026-05-13 A | DAM3-C-B8-S-337 | 100% | 2026-09-19 | 2026-09-20 |  |  | Mason [32 h]; Construction Cost [4431.19] | 4,431.19 | 4,431.19 | 1 | 05 | 01 | 08 | H1.C.K1.00.SW.F.1130 | PH1-MHR-ST-1020 | 10 |  |  |  |  |
| DAM3-C-B8-S-527 |  | Anti Termite Below Grade Beams | 1d | 2026-05-13 A | 2026-05-13 A | DAM3-C-B8-S-367, DAM3-P-ST-A-210, DAM3-C-B7-S-6133 | 100% | 2026-09-15 | 2026-09-15 |  |  | Mason [16 h]; Construction Cost [11905.5] | 11,905.55 | 11,905.55 | 1 | 05 | 01 | 08 | H1.C.K1.00.SW.F.1030 | PH1-MHR-ST-1020 | 10 |  |  |  |  |
| DAM3-C-B8-S-339 |  | Rebar for Grade Beams | 5d | 2026-05-16 A | 2026-05-20 A | DAM3-C-B8-S-338 | 100% | 2026-09-17 | 2026-09-22 |  |  | Steel Fixer [80 h]; Construction Cost [27194.5] | 27,194.46 | 27,194.46 | 1 | 05 | 01 | 08 |  |  |  |  |  |  |  |
| DAM3-C-B8-S-341 |  | Anchor bolts installation | 2d | 2026-05-17 A | 2026-05-20 A | DAM3-C-B8-S-340 SS | 100% | 2026-09-27 | 2026-09-28 |  |  | Carperter [32 h]; Construction Cost [57238.8] | 57,238.83 | 57,238.83 | 1 | 05 | 01 | 08 |  |  |  |  |  |  |  |
| DAM3-C-B8-S-340 |  | Formwork for Grade Beams | 2d | 2026-05-20 A | 2026-05-23 A | DAM3-C-B8-S-339, DAM3-P-ST-A-220 | 100% | 2026-10-01 | 2026-10-03 |  |  | Carperter [32 h]; Construction Cost [6798.61] | 6,798.61 | 6,798.61 | 1 | 05 | 01 | 08 |  |  |  |  |  |  |  |
| DAM3-C-B8-S-342 |  | Pouring Concrete for Grade Beams | 1d | 2026-05-24 A | 2026-05-25 A | DAM3-C-B8-S-340, DAM3-C-B8-S-341 | 100% | 2026-10-04 | 2026-10-04 |  |  | Mason [16 h]; Carperter [16 h]; Concrete Mixer [8 h]; Steel Fixer [16 h]; Equipment Operator [16 h]; Construction Cost [33993.1] | 33,993.09 | 33,993.09 | 1 | 05 | 01 | 08 | H1.C.K1.00.RC.F.1110 | PH1-MHR-ST-1030 | 21 |  |  |  |  |
| DAM3-C-B8-S-347 |  | Damp proof /Bitumin paint on Grade Beams | 5d | 2026-05-31 A | 2026-06-03 A | DAM3-C-B8-S-342 | 100% | 2026-10-08 | 2026-10-13 |  |  | Painter [80 h]; Construction Cost [24777.7] | 24,777.73 | 24,777.73 | 1 | 05 | 01 | 08 | H1.C.K1.00.SW.F.1050 | PH1-MHR-ST-1080 | 15 |  |  |  |  |
|  | 5 | **SLAB ON GRADE** |  | 2026-06-04 | 2026-11-12 |  |  |  |  |  |  |  |  |  |  |  |  |  |  |  |  |  |  |  |  |
| DAM3-C-B8-S-377 |  | Backfilling / Compaction for Slab on Grade | 7d | 2026-06-04 A | 2026-06-09 A | DAM3-C-B8-S-347, DAM3-P-ST-EN-120, DAM3-P-ST-M-430, DAM3-P-ST-M-490, DAM3-P-ST-M-620, DAM3-P-ST-E-340, DAM3-E-ST-E-210 | 100% | 2026-10-24 | 2026-10-31 |  |  | Mini Roller Compactor [128 h]; General Labour [256 h]; Equipment Operator [256 h]; Wheel Loader [128 h]; Truck [128 h]; Construction Cost [23023.1] | 23,023.09 | 23,023.09 | 1 | 05 | 01 | 08 |  |  |  |  |  |  |  |
| DAM3-C-B8-S-378 |  | Anti Termite Treatment below Ground Slab | 1d | 2026-07-13 A | 2026-07-16 A | DAM3-C-B8-S-377 | 100% | 2026-11-14 | 2026-11-14 |  |  | General Labour [16 h]; Construction Cost [15874.1] | 15,874.08 | 15,874.08 | 1 | 05 | 01 | 08 | H1.C.A1.06.SW.F.1220 | PH1-MHR-ST-645 | 15 |  |  |  |  |
| DAM3-C-B8-S-379 |  | Vapour barrier for below Ground Slab | 2d | 2026-07-13 A | 2026-07-16 A | DAM3-C-B8-S-378 | 100% | 2026-11-15 | 2026-11-16 |  |  | General Labour [32 h]; Construction Cost [13233.5] | 13,233.49 | 13,233.49 | 1 | 05 | 01 | 08 |  |  |  |  |  |  |  |
| DAM3-C-B8-S-382 |  | Pouring Concrete for Ground Slab | 4d | 2026-07-13 A | 2026-07-16 A | DAM3-C-B8-S-379 | 100% | 2026-11-17 | 2026-11-21 |  |  | Mason [64 h]; Carperter [64 h]; Steel Fixer [64 h]; Concrete Mixer [32 h]; Equipment Operator [64 h]; Construction Cost [344195] | 344,195.21 | 344,195.21 | 1 | 05 | 01 | 08 | H1.C.A1.06.RC.G.1210 | PH1-MHR-ST-496 | 24 |  |  |  |  |
| DAM3-C-B8-S-517 |  | Concrete pad | 7d | 2026-11-05 | 2026-11-12 | DAM3-C-B8-A-0150 |  |  |  | 65.4d | 2d | Mason [112 h]; Construction Cost [907.11] | 907.11 |  |  | 05 | 01 | 08 |  |  |  |  |  |  |  |
|  | 4 | **COLUMNS & BEAMS** |  | 2026-05-16 | 2026-09-03 |  |  |  |  |  |  |  |  |  |  |  |  |  |  |  |  |  |  |  |  |
| DAM3-C-B8-S-6101 |  | Rebar for Tie Beams | 4d | 2026-05-16 A | 2026-05-23 A | DAM3-C-B8-S-5103 | 100% | 2026-11-09 | 2026-11-12 |  |  | Steel Fixer [64 h]; Construction Cost [7263.64] | 7,263.64 | 7,263.64 | 1 | 05 | 01 | 08 |  |  |  | 3 | 1 | 4 | 1 |
| DAM3-C-B8-S-6102 |  | Formwork for Tie Beams | 2d | 2026-05-16 A | 2026-05-24 A | DAM3-C-B8-S-6101 | 100% | 2026-11-14 | 2026-11-15 |  |  | Carperter [32 h]; Construction Cost [1815.91] | 1,815.91 | 1,815.91 | 1 | 05 | 01 | 08 |  |  |  | 3 | 1 | 4 | 1 |
| DAM3-C-B8-S-6103 |  | Pouring Concrete for Tie Beams | 1d | 2026-05-16 A | 2026-05-25 A | DAM3-C-B8-S-6102, DAM3-P-ST-EX-100, DAM3-P-ST-EX-90 | 100% | 2026-11-16 | 2026-11-16 |  |  | Mason [16 h]; Carperter [16 h]; Concrete Mixer [32 h]; Steel Fixer [16 h]; Equipment Operator [16 h]; Construction Cost [9079.54] | 9,079.54 | 9,079.54 | 1 | 05 | 01 | 08 | H1.C.K1.00.RC.F.1110 | PH1-MHR-ST-1030 | 21 | 3 | 1 | 4 | 1 |
| DAM3-C-B8-S-5101 |  | Rebar for column | 5d | 2026-07-02 A | 2026-07-11 A | DAM3-C-B8-S-377, DAM3-E-ST-A-1720, DAM3-P-ST-A-320, DAM3-E-ST-A-1750, DAM3-P-ST-A-330, DAM3-E-ST-A-1760, DAM3-P-ST-EN-150, DAM3-P-ST-EN-140, DAM3-P-ST-EN-130, DAM3-P-ST-M-520, DAM3-P-ST-M-440, DAM3-P-ST-M-510, DAM3-P-ST-M-660, DAM3-P-ST-M-500, DAM3-P-ST-E-300 | 100% | 2026-11-03 | 2026-11-08 |  |  | Steel Fixer [112 h]; Construction Cost [20144] | 20,144.05 | 20,144.05 | 1 | 05 | 01 | 08 |  |  |  | 3 | 1 | 4 | 1 |
| DAM3-C-B8-S-5102 |  | Formwork for column | 4d | 2026-07-07 A | 2026-07-25 A | DAM3-C-B8-S-5101, DAM3-P-ST-EN-160, DAM3-P-ST-E-330 | 100% | 2026-11-10 | 2026-11-15 |  |  | Carperter [64 h]; Construction Cost [5036.01] | 5,036.01 | 5,036.01 | 1 | 05 | 01 | 08 |  |  |  | 3 | 1 | 4 | 1 |
| DAM3-C-B8-S-5103 |  | Pouring Concrete for column | 1d | 2026-07-13 A | 2026-07-26 A | DAM3-C-B8-S-5102, DAM3-P-ST-EN-170 | 100% | 2026-11-16 | 2026-11-16 |  |  | Mason [16 h]; Carperter [16 h]; Concrete Mixer [32 h]; Steel Fixer [16 h]; Equipment Operator [16 h]; Construction Cost [25180.1] | 25,180.06 | 25,180.06 | 1 | 05 | 01 | 08 | H1.C.K1.00.RC.F.1110 | PH1-MHR-ST-1030 | 21 | 3 | 1 | 4 | 1 |
| DAM3-C-B8-S-6113 |  | Rebar for Beams | 4d | 2026-08-23 A | 2026-08-26 A | DAM3-C-B8-S-6103 | 100% | 2026-10-08 | 2026-10-12 |  |  | Steel Fixer [64 h]; Construction Cost [13379.1] | 13,379.11 | 13,379.11 | 1 | 05 | 01 | 08 |  |  |  | 3 | 1 | 4 | 1 |
| DAM3-C-B8-S-6123 |  | Formwork for Beams | 2d | 2026-08-29 A | 2026-09-01 A | DAM3-C-B8-S-6113, DAM3-C-B8-S-6113 FF | 100% | 2026-10-13 | 2026-10-14 |  |  | Carperter [32 h]; Construction Cost [3344.77] | 3,344.77 | 3,344.77 | 1 | 05 | 01 | 08 |  |  |  | 3 | 1 | 4 | 1 |
| DAM3-C-B8-S-6133 |  | Pouring Concrete for Beams | 1d | 2026-09-01 A | 2026-09-03 A | DAM3-C-B8-S-6123, DAM3-C-B8-S-6123 FF | 100% | 2026-10-17 | 2026-10-17 |  |  | Mason [16 h]; Carperter [16 h]; Concrete Mixer [32 h]; Steel Fixer [16 h]; Equipment Operator [16 h]; Construction Cost [16723.9] | 16,723.88 | 16,723.88 | 1 | 05 | 01 | 08 | H1.C.K1.00.RC.F.1110 | PH1-MHR-ST-1030 | 21 | 3 | 1 | 4 | 1 |

| ID | WBS | Activity | Duration | Start | Finish | Predecessors | Complete | Remaining | Planned start | Planned finish | Total float | Free float | Resources | Cost | Actual cost | Phasing Code Category | Discipline | Project component code | 00 Activity ID | Zone # |
| --- | --- | --- | --- | --- | --- | --- | --- | --- | --- | --- | --- | --- | --- | --- | --- | --- | --- | --- | --- | --- |
|  | 5 | **STRUCTURAL STEEL** |  | 2026-06-14 | 2026-11-30 |  |  |  |  |  |  |  |  |  |  |  |  |  |  |  |
| DAM3-C-B8-SS-0100 |  | Installation of columns | 3d | 2026-06-14 A | 2026-06-15 A | DAM3-C-B8-S-382, DAM3-C-B7-SS-0110 SS, DAM3-C-B8-S-6133, DAM3-P-ST-EX-150, DAM3-P-ST-EX-140, DAM3-P-ST-EX-130, DAM3-P-ST-EX-110 | 100% |  | 2026-12-10 | 2026-12-13 |  |  | Structural Steel Fixer [80 h]; General Labour [80 h]; Equipment Operator [80 h]; Mobile Crane [24 h]; Construction Cost [217508] | 217,507.55 | 217,507.55 | 05 | 02 | 08 |  |  |
| DAM3-C-B8-SS-0110 |  | Installation of raft and purlins | 5d | 2026-06-15 A | 2026-06-16 A | DAM3-C-B8-SS-0100, DAM3-P-ST-M-390 | 100% |  | 2026-12-12 | 2026-12-16 |  |  | Structural Steel Fixer [160 h]; General Labour [160 h]; Mobile Crane [56 h]; Equipment Operator [160 h]; Construction Cost [326261] | 326,261.32 | 326,261.32 | 05 | 02 | 08 |  |  |
| DAM3-C-B8-SS-610 |  | Intumescent paint to steel works | 7d | 2026-06-17 A | 2026-06-24 A | DAM3-C-B8-SS-0110 | 100% |  | 2026-12-15 | 2026-12-22 |  |  | Painter [112 h]; Construction Cost [317760] | 317,759.56 | 317,759.56 | 05 | 02 | 08 | H1.C.A1.SA.FI.G.0730 | 1 |
| DAM3-C-B8-SS-0140 |  | Installation of roof sheet | 5d | 2026-07-19 A | 2026-08-01 A | DAM3-C-B8-A-0120, DAM3-C-B8-SS-610, DAM3-C-B8-S-6133 | 100% |  | 2026-12-13 | 2026-12-19 |  |  | Roof sheet worker [160 h]; General Labour [160 h]; Mobile Crane [40 h]; Equipment Operator [160 h]; Construction Cost [217508] | 217,507.55 | 217,507.55 | 05 | 02 | 08 |  |  |
| DAM3-C-B8-SS-0130 |  | Installation of wall sandwich panel | 5d | 2026-09-02 A | 2026-09-22 A | DAM3-C-B8-A-0150 | 100% |  | 2026-11-02 | 2026-11-08 |  |  | Sandwich panel worker [112 h]; General Labour [112 h]; Mobile Crane [40 h]; Equipment Operator [112 h]; Construction Cost [326261] | 326,261.32 | 326,261.32 | 05 | 02 | 08 |  |  |
| DAM3-C-B8-SS-1030 |  | Steel members for external platform | 4d | 2026-09-20 A | 2026-09-21 A | DAM3-C-B8-SS-620 | 100% |  | 2026-11-02 | 2026-11-05 |  |  | Construction Cost [18670.8]; General Labour [112 h]; Mobile Crane [56 h]; Structural Steel Fixer [112 h]; Equipment Operator [112 h] | 18,670.78 | 18,670.78 | 05 | 02 | 08 | H1.C.A1.SA.FI.G.0730 | 1 |
| DAM3-C-B8-SS-620 |  | Steel members for office area | 4d | 2026-09-26 A | 2026-09-28 A | DAM3-C-B8-SS-610, DAM3-C-B8-SS-0110 | 100% |  | 2026-11-02 | 2026-11-05 |  |  | Construction Cost [115805]; Structural Steel Fixer [112 h]; Mobile Crane [56 h]; General Labour [112 h]; Equipment Operator [112 h] | 115,805.2 | 115,805.2 | 05 | 02 | 08 | H1.C.A1.SA.FI.G.0730 | 1 |
| DAM3-C-B8-SS-1020 |  | Epoxy paint to steel members at office area | 4d | 2026-11-05 | 2026-11-09 | DAM3-C-B8-SS-620 |  |  |  |  | 52.8d | 1d | Painter [112 h]; Construction Cost [23161] | 23,161.04 |  | 05 | 02 | 08 | H1.C.A1.SA.FI.G.0730 | 1 |
| DAM3-C-B8-SS-1040 |  | Epoxy paint for external platform | 3d | 2026-11-28 | 2026-11-30 | DAM3-C-B8-SS-1030, DAM3-PMS-DMS-2310, DAM3-PMS-MMS-0080 |  |  |  |  | 34.8d | 0d | Painter [80 h]; Construction Cost [3734.16] | 3,734.16 |  | 05 | 02 | 08 | H1.C.A1.SA.FI.G.0730 | 1 |
|  | 2 | **ARCHITECTURAL** |  | 2026-07-18 | 2027-02-23 |  |  |  |  |  |  |  |  |  |  |  |  |  |  |  |
|  | 1 | **MASONARY WORKS** |  | 2026-07-23 | 2026-08-23 |  |  |  |  |  |  |  |  |  |  |  |  |  |  |  |
| DAM3-C-B8-A-0120 |  | Block work at factory area | 5d | 2026-07-23 A | 2026-07-27 A | DAM3-C-B8-S-382, DAM3-C-B8-SS-0110 | 100% |  | 2026-12-05 | 2026-12-10 |  |  | AAC panel erector [240 h]; General Labour [240 h]; Equipment Operator [240 h]; Mobile Crane [120 h]; Construction Cost [58338.7] | 58,338.72 | 58,338.72 | 05 | 03 | 08 |  |  |
| DAM3-C-B8-A-0150 |  | Block work at office area | 5d | 2026-07-23 A | 2026-08-23 A | DAM3-C-B8-SS-0140 SS, DAM3-C-B8-SS-620 | 100% |  | 2026-12-12 | 2026-12-17 |  |  | AAC panel erector [160 h]; General Labour [160 h]; Mobile Crane [56 h]; Equipment Operator [160 h]; Construction Cost [6179.18] | 6,179.18 | 6,179.18 | 05 | 03 | 08 |  |  |
| DAM3-C-B8-A-170 |  | Block work at toilet area | 3d | 2026-07-27 A | 2026-08-22 A | DAM3-C-B8-A-0150, DAM3-C-B8-SS-1020, DAM3-C-B7-SS-1040 | 100% |  | 2026-12-22 | 2026-12-24 |  |  | Mason [112 h]; Construction Cost [14436.3] | 14,436.31 | 14,436.31 | 05 | 03 | 08 |  | 1 |
|  | 5 | **WALL FINISHES** |  | 2026-09-10 | 2027-01-07 |  |  |  |  |  |  |  |  |  |  |  |  |  |  |  |
| DAM3-C-B8-A-180 |  | Internal Wall Plaster | 10d | 2026-09-10 A | 2026-09-28 A | DAM3-C-B8-A-170, DAM3-C-B8-E-183, DAM3-C-B8-S-517 | 100% |  | 2026-11-11 | 2026-11-23 |  |  | Mason [240 h]; Construction Cost [48590.2] | 48,590.16 | 48,590.16 | 05 | 03 | 08 | H1.C.A1.SA.FI.G.0710 | 1 |
| DAM3-C-B8-A-230 |  | Paint to Plaster (Primer, Putty & First Coat) | 4d | 2026-10-01 A | 2027-01-07 | DAM3-C-B8-A-250 | 85% | 0.6d | 2027-01-14 | 2027-01-18 | 26.9d | 0d | Painter [112 h]; Construction Cost [44167.3] | 44,167.3 | 37,542.21 | 05 | 03 | 08 | H1.C.A1.SA.FI.G.0730 | 1 |
|  | 2 | **CIELING FINISHES** |  | 2027-01-13 | 2027-01-16 |  |  |  |  |  |  |  |  |  |  |  |  |  |  |  |
| DAM3-C-B8-A-240 |  | Installation of Ceiling Gypsum Board | 3d | 2027-01-13 | 2027-01-16 | DAM3-C-B8-A-220, DAM3-C-B8-S-517, DAM3-C-B1-E-303 |  |  |  |  | 33.5d | 30d | Carperter [80 h]; Construction Cost [46792.3] | 46,792.3 |  | 05 | 03 | 08 | H1.C.A1.SA.FI.G.0820 | 1 |
|  | 6 | **FLOOR FINISHES** |  | 2026-09-30 | 2027-02-23 |  |  |  |  |  |  |  |  |  |  |  |  |  |  |  |
| DAM3-C-B8-A-220 |  | Tiles for Toilet | 4d | 2026-09-30 A | 2026-10-04 A | DAM3-C-B8-A-370, DAM3-C-B2-E-303 | 100% |  | 2027-01-10 | 2027-01-13 |  |  | Tile Fixer [112 h]; Construction Cost [46530.7] | 46,530.71 | 46,530.71 | 05 | 03 | 08 | H1.C.A1.SA.FI.G.0640 | 1 |
| DAM3-C-B8-A-250 |  | Tiles for Office Area | 2d | 2027-01-05 | 2027-01-06 | DAM3-C-B8-A-220 |  |  |  |  | 24.4d | 0d | Tile Fixer [32 h]; Construction Cost [26867.3] | 26,867.31 |  | 05 | 03 | 08 |  |  |
| DAM3-C-B8-A-390 |  | Granite strip | 2d | 2027-01-07 | 2027-01-09 | DAM3-C-B8-A-558, DAM3-C-B8-A-250, DAM3-C-B2-E-203 |  |  |  |  | 24.4d | 0d | Tile Fixer [32 h]; Construction Cost [671.12] | 671.12 |  | 05 | 03 | 08 | H1.C.A1.SA.FI.G.0640 | 1 |
| DAM3-C-B8-A-420 |  | Epoxy paint | 2d | 2027-02-21 | 2027-02-23 | DAM3-C-B8-A-340, DAM3-C-B8-A-240 |  |  |  |  | 3.5d | 2.5d | Painter [112 h]; Construction Cost [115420] | 115,419.76 |  | 05 | 03 | 08 |  |  |

| ID | WBS | Activity | Duration | Start | Finish | Predecessors | Complete | Remaining | Planned start | Planned finish | Total float | Free float | Resources | Cost | Actual cost | Phasing Code Category | Discipline | Project component code | Ordinal Start | Ordinal Finish | 00 Activity ID | Ordinal Duration | Zone # |
| --- | --- | --- | --- | --- | --- | --- | --- | --- | --- | --- | --- | --- | --- | --- | --- | --- | --- | --- | --- | --- | --- | --- | --- |
|  | 3 | **DOORS & WINDOWS** |  | 2026-09-27 | 2026-11-14 |  |  |  |  |  |  |  |  |  |  |  |  |  |  |  |  |  |  |
| DAM3-C-B8-A-558 |  | Skylight fixtures installation | 1d | 2026-09-27 A | 2026-09-30 A | DAM3-C-B8-A-557 | 100% |  | 2026-11-21 | 2026-11-21 |  |  | Carperter [16 h]; Construction Cost [6489.89] | 6,489.89 | 6,489.89 | 05 | 03 | 08 |  |  |  |  |  |
| DAM3-C-B8-A-552 |  | Window (CW1) | 7d | 2026-10-08 A | 2026-11-07 | DAM3-C-B8-SS-0130 | 75% | 1.75d | 2026-11-16 | 2026-11-23 | 64.65d | 0d | Carperter [112 h]; Construction Cost [94173.2] | 94,173.21 | 70,629.91 | 05 | 03 | 08 |  |  |  |  |  |
| DAM3-C-B8-A-553 |  | Roll up Shutter Door | 1d | 2026-11-07 | 2026-11-08 | DAM3-C-B8-A-552 |  |  |  |  | 64.65d | 0d | Carperter [16 h]; Construction Cost [68619.2] | 68,619.2 |  | 05 | 03 | 08 |  |  |  |  |  |
| DAM3-C-B8-A-200 |  | Supply and install (D5) 1000*2200mm single leaf steel door with door | 1d | 2026-11-08 | 2026-11-09 | DAM3-C-B8-A-553 |  |  |  |  | 64.65d | 0d | Carperter [16 h]; Construction Cost [16016.2] | 16,016.16 |  | 05 | 03 | 08 |  |  |  |  |  |
| DAM3-C-B8-A-554 |  | Supply and install (D4) 800*2200 mm single leaf aluminum door with door | 1d | 2026-11-09 | 2026-11-10 | DAM3-C-B8-A-200 |  |  |  |  | 64.65d | 0d | Carperter [16 h]; Construction Cost [22737.8] | 22,737.85 |  | 05 | 03 | 08 |  |  |  |  |  |
| DAM3-C-B8-A-555 |  | Supply and install (D7) 1000*2200 mm single leaf aluminum door with door | 1d | 2026-11-10 | 2026-11-11 | DAM3-C-B8-A-554 |  |  |  |  | 64.65d | 0d | Carperter [16 h]; Construction Cost [7811.07] | 7,811.07 |  | 05 | 03 | 08 |  |  |  |  |  |
| DAM3-C-B8-A-556 |  | Supply and install (D3) 1000*2200 mm single leaf aluminum door with door | 1d | 2026-11-11 | 2026-11-12 | DAM3-C-B8-A-555 |  |  |  |  | 64.65d | 0d | Carperter [16 h]; Construction Cost [16016.2] | 16,016.16 |  | 05 | 03 | 08 |  |  |  |  |  |
| DAM3-C-B8-A-557 |  | Supply and install fire rated 45 min (D2) 1200*2200 mm single leaf steel door | 1d | 2026-11-12 | 2026-11-14 | DAM3-C-B8-A-556 |  |  |  |  | 64.65d | 0d | Carperter [16 h]; Construction Cost [16711.5] | 16,711.52 |  | 05 | 03 | 08 |  |  |  |  |  |
|  | 4 | **WATER PROOFING WORKS** |  | 2026-11-16 | 2026-11-19 |  |  |  |  |  |  |  |  |  |  |  |  |  |  |  |  |  |  |
| DAM3-C-B8-A-370 |  | Waterproofing membrane for toilets | 4d | 2026-11-16 | 2026-11-19 | DAM3-C-B8-M-200, DAM3-C-B8-A-180, DAM3-C-B8-A-558 |  |  |  |  | 63.4d | 39d | General Labour [64 h]; Construction Cost [4879.02] | 4,879.02 |  | 05 | 03 | 08 |  |  |  |  |  |
|  | 7 | **METAL WORKS** |  | 2026-07-18 | 2027-02-03 |  |  |  |  |  |  |  |  |  |  |  |  |  |  |  |  |  |  |
| DAM3-C-B8-A-300 |  | Galvanised Steel Gratings | 2d | 2026-07-18 A | 2026-07-18 A | DAM3-C-B8-A-292, DAM3-C-B7-E-203, DAM3-C-B7-M-429, DAM3-C-B1-M-330, DAM3-C-B2-M-370, DAM3-C-B2-M-320 | 100% |  | 2027-02-13 | 2027-02-15 |  |  | Steel Fixer [32 h]; General Labour [32 h]; Construction Cost [6455.16] | 6,455.16 | 6,455.16 | 05 | 03 | 08 |  |  |  |  |  |
| DAM3-C-B8-A-292 |  | Aluminium composite panel | 3d | 2026-10-06 A | 2027-02-03 | DAM3-C-B8-A-291, DAM3-C-B1-E-203, DAM3-C-B1-M-429, DAM3-C-B2-M-330 | 30% | 2.1d | 2027-02-08 | 2027-02-10 | 11d | 1.4d | Steel Fixer [80 h]; General Labour [80 h]; Construction Cost [175889] | 175,888.76 | 52,766.63 | 05 | 03 | 08 |  |  |  |  |  |
| DAM3-C-B8-A-290 |  | Steel Ladder | 2d | 2027-01-10 | 2027-01-11 | DAM3-C-B8-A-390, DAM3-C-B2-M-429 |  |  |  |  | 24.4d | 0d | Steel Fixer [32 h]; General Labour [32 h]; Construction Cost [9839.16] | 9,839.16 |  | 05 | 03 | 08 |  |  |  |  |  |
| DAM3-C-B8-A-291 |  | Steel railing works | 4d | 2027-01-12 | 2027-01-16 | DAM3-C-B8-A-290 |  |  |  |  | 24.4d | 13.4d | Steel Fixer [64 h]; General Labour [64 h]; Construction Cost [1533.98] | 1,533.98 |  | 05 | 03 | 08 |  |  |  |  |  |
|  | 8 | **SPECIALTIES** |  | 2027-02-13 | 2027-02-20 |  |  |  |  |  |  |  |  |  |  |  |  |  |  |  |  |  |  |
| DAM3-C-B8-A-320 |  | Installation of fittings | 3d | 2027-02-13 | 2027-02-15 | DAM3-C-B8-A-300, DAM3-C-B7-M-330, DAM3-C-B1-M-370, DAM3-C-B1-M-320, DAM3-C-B1-A-340, DAM3-C-B2-A-340 |  |  |  |  | 3.5d | 0d | Plumber [80 h]; Construction Cost [22981.3] | 22,981.27 |  | 05 | 03 | 08 |  |  |  |  |  |
| DAM3-C-B8-A-570 |  | Identification sign; ID01 & ID02 | 3d | 2027-02-16 | 2027-02-18 | DAM3-C-B8-A-320, DAM3-C-B7-M-340 |  |  |  |  | 3.5d | 0d | Mason [48 h]; Construction Cost [9630.56] | 9,630.56 |  | 05 | 03 | 08 |  |  |  |  |  |
| DAM3-C-B8-A-340 |  | Furniture Installation | 1d | 2027-02-20 | 2027-02-20 | DAM3-C-B8-A-570 |  |  |  |  | 3.5d | 0d | General Labour [16 h]; Mason [16 h]; Construction Cost [12468.8] | 12,468.83 |  | 05 | 03 | 08 |  |  |  |  |  |
|  | 3 | **MECHANICAL** |  | 2026-06-15 | 2027-02-18 |  |  |  |  |  |  |  |  |  |  |  |  |  |  |  |  |  |  |
|  | 1 | **HVAC** |  | 2026-10-11 | 2027-01-21 |  |  |  |  |  |  |  |  |  |  |  |  |  |  |  |  |  |  |
|  | 1 | **FIRST STAGE** |  | 2026-10-11 | 2027-01-17 |  |  |  |  |  |  |  |  |  |  |  |  |  |  |  |  |  |  |
| DAM3-C-B8-M-140 |  | Installation of HVAC Ducts | 2d | 2026-10-11 A | 2027-01-16 | DAM3-C-B8-M-160 | 50% | 1d | 2027-01-14 | 2027-01-17 | 27.9d | 0d | Ductman [32 h]; Construction Cost [149489] | 149,489.33 | 74,744.66 | 05 | 04 | 08 | 0 | 0 | H1.C.A1.0A.MH.G.1040 | 0 | 1 |
| DAM3-C-B8-M-170 |  | Installation of Duct insulation | 2d | 2026-10-11 A | 2027-01-17 | DAM3-C-B8-M-140 | 50% | 1d | 2027-01-17 | 2027-01-19 | 27.9d | 0d | Ductman [32 h]; Construction Cost [21205.4] | 21,205.4 | 10,602.7 | 05 | 04 | 08 |  |  |  |  |  |

| ID | WBS | Activity | Duration | Start | Finish | Predecessors | Complete | Planned start | Planned finish | Total float | Free float | Resources | Cost | Actual cost | Ordinal Start | Ordinal Finish | 00 Activity ID | Ordinal Duration | Zone # | Phasing Code Category | Discipline | Project component code |
| --- | --- | --- | --- | --- | --- | --- | --- | --- | --- | --- | --- | --- | --- | --- | --- | --- | --- | --- | --- | --- | --- | --- |
|  | 2 | **SECOND STAGE** |  | 2027-01-07 | 2027-01-21 |  |  |  |  |  |  |  |  |  |  |  |  |  |  |  |  |  |
| DAM3-C-B8-M-130 |  | Installation of Exhaust Fans | 2d | 2027-01-07 | 2027-01-10 | DAM3-C-B8-A-230 |  |  |  | 27.9d | 0d | AC Technician [32 h]; Construction Cost [7938.56] | 7,938.56 |  | 0 | 0 | H1.C.A1.0A.MH.X.4050 | 0 | 1 | 05 | 04 | 08 |
| DAM3-C-B8-M-160 |  | Installation of Wall Propeller Type Exhaust Fan | 4d | 2027-01-10 | 2027-01-14 | DAM3-C-B8-M-130 |  |  |  | 27.9d | 0d | AC Technician [64 h]; Construction Cost [46831.6] | 46,831.64 |  |  |  |  |  |  | 05 | 04 | 08 |
| DAM3-C-B8-M-339 |  | Installation of Diffuser | 2d | 2027-01-17 | 2027-01-19 | DAM3-C-B8-M-170 |  |  |  | 27.9d | 0d | Ductman [32 h]; Construction Cost [2144] | 2,144 |  | 0 | 0 | H1.C.A1.0A.MH.G.3010 | 0 | 1 | 05 | 04 | 08 |
| DAM3-C-B8-M-340 |  | Supply, install, test and commission door grilles & exhaust louvers | 2d | 2027-01-19 | 2027-01-21 | DAM3-C-B8-M-339 |  |  |  | 27.9d | 0d | Ductman [32 h]; Construction Cost [5574.4] | 5,574.4 |  | 0 | 0 | H1.C.A1.0A.MH.G.3010 | 0 | 1 | 05 | 04 | 08 |
|  | 2 | **FIRE FIGHTING SYSTEM** |  | 2026-08-12 | 2027-02-18 |  |  |  |  |  |  |  |  |  |  |  |  |  |  |  |  |  |
|  | 1 | **FIRST STAGE** |  | 2026-08-12 | 2026-08-16 |  |  |  |  |  |  |  |  |  |  |  |  |  |  |  |  |  |
| DAM3-C-B8-M-300 |  | Installation of Fire Fighting Pipes (Seamless Black Steel) | 4d | 2026-08-12 A | 2026-08-16 A | DAM3-C-B8-A-230 | 100% | 2027-02-01 | 2027-02-06 |  |  | Pipe Fitter [112 h]; Construction Cost [72394.8] | 72,394.75 | 72,394.75 | 0 | 0 | H1.C.A1.0A.MF.G.1010 | 0 | 1 | 05 | 04 | 08 |
| DAM3-C-B8-M-310 |  | Installation of Fire Fighting Valve | 5d | 2026-08-15 A | 2026-08-16 A | DAM3-C-B8-M-300 | 100% | 2027-02-08 | 2027-02-14 |  |  | Pipe Fitter [80 h]; Construction Cost [12199.4] | 12,199.4 | 12,199.4 | 0 | 0 | H1.C.A1.0A.MF.G.2010 | 0 | 1 | 05 | 04 | 08 |
|  | 2 | **SECOND STAGE** |  | 2027-01-21 | 2027-02-18 |  |  |  |  |  |  |  |  |  |  |  |  |  |  |  |  |  |
| DAM3-C-B8-M-370 |  | Supply, install, test and commission Fire Department Connection(FDC) | 3d | 2027-01-21 | 2027-01-25 | DAM3-C-B8-M-340 |  |  |  | 27.9d | 26.9d | Pipe Fitter [48 h]; Construction Cost [2706.06] | 2,706.06 |  | 0 | 0 | H1.C.A1.0A.MF.G.3010 | 0 | 1 | 05 | 04 | 08 |
| DAM3-C-B8-M-320 |  | Installation of Fire Hose Cabinet | 3d | 2027-02-16 | 2027-02-18 | DAM3-C-B8-M-310, DAM3-C-B2-A-420 |  |  |  | 2.5d | 0d | Pipe Fitter [48 h]; Construction Cost [15158.6] | 15,158.56 |  | 0 | 0 | H1.C.A1.0A.MF.G.3010 | 0 | 1 | 05 | 04 | 08 |
|  | 3 | **SEWER AND DRAINAGE SYSTEM** |  | 2026-06-15 | 2027-01-23 |  |  |  |  |  |  |  |  |  |  |  |  |  |  |  |  |  |
|  | 1 | **FIRST STAGE** |  | 2026-06-15 | 2027-01-06 |  |  |  |  |  |  |  |  |  |  |  |  |  |  |  |  |  |
| DAM3-C-B8-M-200 |  | Installation of Sanitary Waste / Drainage Pipes | 4d | 2026-06-15 A | 2026-06-20 A | DAM3-C-B8-S-347 | 100% | 2026-10-18 | 2026-10-21 |  |  | Plumber [64 h]; Construction Cost [18585.1] | 18,585.14 | 18,585.14 | 0 | 0 | H1.C.K1.00.MP.G.1020 | 0 | 1 | 05 | 04 | 08 |
| DAM3-C-B8-M-380 |  | Installation of Trench drain | 5d | 2026-06-20 A | 2026-06-21 A | DAM3-C-B8-M-220 | 100% | 2027-01-26 | 2027-02-01 |  |  | Plumber [80 h]; Construction Cost [11508.8] | 11,508.8 | 11,508.8 |  |  |  |  |  | 05 | 04 | 08 |
| DAM3-C-B8-M-220 |  | Installation of Floor Drain | 2d | 2027-01-05 | 2027-01-06 | DAM3-C-B8-M-200, DAM3-C-B8-A-220 |  |  |  | 29.5d | 0d | Plumber [32 h]; Construction Cost [11056] | 11,055.96 |  |  |  |  |  | 1 | 05 | 04 | 08 |
|  | 2 | **SECOND STAGE** |  | 2027-01-07 | 2027-01-23 |  |  |  |  |  |  |  |  |  |  |  |  |  |  |  |  |  |
| DAM3-C-B8-M-180 |  | Installation of Electric Water Heater | 2d | 2027-01-07 | 2027-01-09 | DAM3-C-B8-M-380 |  |  |  | 29.5d | 0d | Plumber [32 h]; Construction Cost [1819.51] | 1,819.51 |  | 0 | 0 | H1.C.K1.00.MP.G.1030 | 0 | 1 | 05 | 04 | 08 |
| DAM3-C-B8-M-190 |  | Installation of Sanitary Fixture and Accessories | 4d | 2027-01-10 | 2027-01-13 | DAM3-C-B8-M-180 |  |  |  | 29.5d | 0d | Plumber [64 h]; Construction Cost [19921.7] | 19,921.72 |  | 0 | 0 | H1.C.K1.00.MP.G.2040 | 0 | 1 | 05 | 04 | 08 |
| DAM3-C-B8-M-210 |  | Installation of Lavotary /Wash Basin | 2d | 2027-01-14 | 2027-01-16 | DAM3-C-B8-M-180, DAM3-C-B8-M-190 |  |  |  | 29.5d | 0d | Plumber [32 h]; Construction Cost [21416.7] | 21,416.68 |  |  |  |  |  | 1 | 05 | 04 | 08 |
| DAM3-C-B8-M-270 |  | Installation of Bib Tap | 2d | 2027-01-17 | 2027-01-18 | DAM3-C-B8-M-190, DAM3-C-B8-M-210 |  |  |  | 29.5d | 0d | Plumber [32 h]; Construction Cost [1900.66] | 1,900.66 |  |  |  |  |  |  | 05 | 04 | 08 |
| DAM3-C-B8-M-428 |  | Installation of Water Tap | 2d | 2027-01-19 | 2027-01-20 | DAM3-C-B8-M-210, DAM3-C-B8-M-270 |  |  |  | 29.5d | 0d | Plumber [32 h]; Construction Cost [2874.14] | 2,874.14 |  |  |  |  |  |  | 05 | 04 | 08 |
| DAM3-C-B8-M-429 |  | Installation of Roof Vent Cap | 2d | 2027-01-21 | 2027-01-23 | DAM3-C-B8-M-428 |  |  |  | 29.5d | 28.5d | Pipe Fitter [32 h]; Construction Cost [927.12] | 927.12 |  |  |  |  |  |  | 05 | 04 | 08 |

| ID | WBS | Activity | Duration | Start | Finish | Predecessors | Complete | Remaining | Planned start | Planned finish | Total float | Free float | Resources | Cost | Actual cost | Ordinal Start | Ordinal Finish | 00 Activity ID | Ordinal Duration | Zone # | Phasing Code Category | Discipline | Project component code |
| --- | --- | --- | --- | --- | --- | --- | --- | --- | --- | --- | --- | --- | --- | --- | --- | --- | --- | --- | --- | --- | --- | --- | --- |
|  | 4 | **WATER SUPPLY SYSTEM** |  | 2026-09-05 | 2027-01-11 |  |  |  |  |  |  |  |  |  |  |  |  |  |  |  |  |  |  |
|  | 1 | **FIRST STAGE** |  | 2026-09-05 | 2026-09-09 |  |  |  |  |  |  |  |  |  |  |  |  |  |  |  |  |  |  |
| DAM3-C-B8-M-290 |  | Installation of Water Supply Pipes | 4d | 2026-09-05 A | 2026-09-08 A | DAM3-C-B8-A-230 | 100% |  | 2027-01-02 | 2027-01-06 |  |  | Plumber [64 h]; Construction Cost [23318.4] | 23,318.41 | 23,318.41 | 0 | 0 | H1.C.K1.00.MP.G.1010 | 0 | 1 | 05 | 04 | 08 |
| DAM3-C-B8-M-280 |  | Installation of Water Supply Valve | 2d | 2026-09-06 A | 2026-09-09 A | DAM3-C-B8-M-290 | 100% |  | 2027-01-10 | 2027-01-11 |  |  | Plumber [32 h]; Construction Cost [18274.3] | 18,274.27 | 18,274.27 | 0 | 0 | H1.C.K1.00.MP.G.2010 | 0 | 1 | 05 | 04 | 08 |
|  | 2 | **SECOND STAGE** |  | 2027-01-07 | 2027-01-11 |  |  |  |  |  |  |  |  |  |  |  |  |  |  |  |  |  |  |
| DAM3-C-B8-M-330 |  | Capped connection | 3d | 2027-01-07 | 2027-01-11 | DAM3-C-B8-M-280 |  |  |  |  | 28.9d | 2d | Plumber [80 h]; Construction Cost [278.13] | 278.13 |  |  |  |  |  |  | 05 | 04 | 08 |
|  | 4 | **ELECTRICAL** |  | 2026-05-19 | 2027-01-27 |  |  |  |  |  |  |  |  |  |  |  |  |  |  |  |  |  |  |
|  | 1 | **FIRST STAGE** |  | 2026-05-19 | 2026-12-29 |  |  |  |  |  |  |  |  |  |  |  |  |  |  |  |  |  |  |
| DAM3-C-B8-E-113 |  | Installation of Earthing and Grounding | 3d | 2026-05-19 A | 2026-12-29 | DAM3-C-B8-E-223 | 90% | 0.3d | 2027-02-10 | 2027-02-14 | 34.8d | 7.9d | Electrician [80 h]; Construction Cost [19646.5] | 19,646.47 | 17,681.82 |  |  | H1.C.K1.00.EM.G.2040 |  | 1 | 05 | 05 | 08 |
| DAM3-C-B8-E-143 |  | Installation of Conduits and wiring outlets - Fire Alarm System | 4d | 2026-05-20 A | 2026-12-02 | DAM3-C-B8-A-170, DAM3-C-B8-SS-1040 | 50% | 2d | 2027-01-04 | 2027-01-09 | 34.8d | 0d | Electrician [64 h]; Construction Cost [1768.31] | 1,768.31 | 884.15 |  |  | H1.C.K1.00.EL.G.1020 |  | 1 | 05 | 05 | 08 |
| DAM3-C-B8-E-183 |  | Installation of Sleeves & Power outlet | 8d | 2026-05-20 A | 2026-11-15 | DAM3-C-B8-A-170 | 50% | 4d | 2027-01-04 | 2027-01-13 | 63.4d | 0d | Electrician [128 h]; Construction Cost [2920.45] | 2,920.45 | 1,460.23 |  |  |  |  | 1 | 05 | 05 | 08 |
| DAM3-C-B8-E-163 |  | Installation of Conduites for Lighting Fixture | 4d | 2026-09-07 A | 2026-12-13 | DAM3-C-B8-E-133 | 90% | 0.4d | 2026-12-06 | 2026-12-09 | 34.8d | 0d | Electrician [64 h]; Construction Cost [8462.97] | 8,462.97 | 7,616.67 |  |  | H1.C.K1.00.EM.G.2030 |  | 1 | 05 | 05 | 08 |
| DAM3-C-B8-E-233 |  | Installation of Wires | 4d | 2026-12-13 | 2026-12-17 | DAM3-C-B8-E-163 |  |  |  |  | 34.8d | 0d | Electrician [64 h]; Construction Cost [16925.9] | 16,925.94 |  |  |  |  |  |  | 05 | 05 | 08 |
| DAM3-C-B8-E-223 |  | Installation of LV Cables | 2d | 2026-12-27 | 2026-12-29 | DAM3-C-B8-E-213 |  |  |  |  | 34.8d | 0d | Electrician [64 h]; Construction Cost [36390] | 36,389.98 |  |  |  |  |  |  | 05 | 05 | 08 |
|  | 2 | **SECOND STAGE** |  | 2026-12-03 | 2027-01-27 |  |  |  |  |  |  |  |  |  |  |  |  |  |  |  |  |  |  |
| DAM3-C-B8-E-123 |  | Installation of Fire Alarm Control Panel | 4d | 2026-12-03 | 2026-12-07 | DAM3-C-B8-E-143 |  |  |  |  | 34.8d | 0d | Electrician [64 h]; Construction Cost [19451.4] | 19,451.37 |  |  |  | H1.C.K1.00.EL.X.4120 |  | 1 | 05 | 05 | 08 |
| DAM3-C-B8-E-133 |  | Installation of Fire Detectors & Accessories | 4d | 2026-12-08 | 2026-12-12 | DAM3-C-B8-E-123 |  |  |  |  | 34.8d | 0d | Electrician [64 h]; Construction Cost [56740.4] | 56,740.37 |  |  |  | H1.C.K1.00.EL.G.3020 |  | 1 | 05 | 05 | 08 |
| DAM3-C-B8-E-153 |  | Installation of Lighting fixtures | 4d | 2026-12-17 | 2026-12-22 | DAM3-C-B8-E-233 |  |  |  |  | 36.8d | 2d | Electrician [64 h]; Construction Cost [76166.7] | 76,166.74 |  |  |  | H1.C.K1.00.EM.G.3010 |  | 1 | 05 | 05 | 08 |
| DAM3-C-B8-E-193 |  | Installation of Main Distribution Board | 2d | 2026-12-17 | 2026-12-20 | DAM3-C-B8-E-233 |  |  |  |  | 34.8d | 0d | Electrician [32 h]; Construction Cost [32472.7] | 32,472.73 |  |  |  | H1.C.K1.00.EM.G.2020 |  | 1 | 05 | 05 | 08 |
| DAM3-C-B8-E-410 |  | Installation of CCTV System | 3d | 2026-12-17 | 2026-12-21 | DAM3-C-B8-E-233 |  |  |  |  | 49.1d | 0d | Plumber [112 h]; Construction Cost [76349.2] | 76,349.24 |  |  |  |  |  |  | 05 | 05 | 08 |
| DAM3-C-B8-E-243 |  | Installation of LP-1 Panel | 2d | 2026-12-20 | 2026-12-22 | DAM3-C-B8-E-193 |  |  |  |  | 34.8d | 0d | Electrician [32 h]; Construction Cost [18403.5] | 18,403.54 |  |  |  | H1.C.K1.00.EM.G.2020 |  | 1 | 05 | 05 | 08 |
| DAM3-C-B8-E-273 |  | Installation of Access Control System | 3d | 2026-12-21 | 2026-12-24 | DAM3-C-B8-E-410 |  |  |  |  | 49.1d | 0d | Electrician [80 h]; Construction Cost [27616.9] | 27,616.86 |  |  |  | H1.C.K1.00.EM.G.2040 |  | 1 | 05 | 05 | 08 |
| DAM3-C-B8-E-253 |  | Installation of PP-AC panel | 2d | 2026-12-22 | 2026-12-24 | DAM3-C-B8-E-243 |  |  |  |  | 34.8d | 0d | Electrician [32 h]; Construction Cost [21648.5] | 21,648.48 |  |  |  | H1.C.K1.00.EM.G.2020 |  | 1 | 05 | 05 | 08 |
| DAM3-C-B8-E-213 |  | Installation of Telephone Cabinet | 2d | 2026-12-24 | 2026-12-27 | DAM3-C-B8-E-253, DAM3-C-B8-E-153 |  |  |  |  | 34.8d | 0d | Electrician [32 h]; Construction Cost [26991.1] | 26,991.08 |  |  |  |  |  | 1 | 05 | 05 | 08 |
| DAM3-C-B8-E-283 |  | Monitor Modules for Fire Alarm | 2d | 2026-12-24 | 2026-12-27 | DAM3-C-B8-E-273 |  |  |  |  | 49.1d | 0d | Electrician [32 h]; Construction Cost [3882.38] | 3,882.38 |  |  |  | H1.C.K1.00.EM.G.2040 |  | 1 | 05 | 05 | 08 |
| DAM3-C-B8-E-293 |  | Line Isolator Modules for Fire Alarm | 2d | 2026-12-27 | 2026-12-29 | DAM3-C-B8-E-283 |  |  |  |  | 49.1d | 0d | Electrician [32 h]; Construction Cost [185.4] | 185.4 |  |  |  | H1.C.K1.00.EM.G.2040 |  | 1 | 05 | 05 | 08 |
| DAM3-C-B8-E-303 |  | Firewarning flash light with sounder; wall mounted, Weather proof | 2d | 2026-12-29 | 2026-12-31 | DAM3-C-B8-E-293 |  |  |  |  | 49.1d | 48.1d | Electrician [32 h]; Construction Cost [3082.69] | 3,082.69 |  |  |  | H1.C.K1.00.EM.G.2040 |  | 1 | 05 | 05 | 08 |
| DAM3-C-B8-E-173 |  | Installation of Wiring Devices | 3d | 2027-01-07 | 2027-01-11 | DAM3-C-B8-E-183, DAM3-C-B8-A-230, DAM3-C-B8-E-113 |  |  |  |  | 26.9d | 0d | Electrician [64 h]; Construction Cost [19435.1] | 19,435.09 |  |  |  | H1.C.K1.00.EM.G.3020 |  | 1 | 05 | 05 | 08 |
| DAM3-C-B8-E-203 |  | Installation of Disconnect Switches | 2d | 2027-01-11 | 2027-01-13 | DAM3-C-B8-E-173 |  |  |  |  | 26.9d | 0d | Electrician [32 h]; Construction Cost [30236] | 30,235.95 |  |  |  |  |  |  | 05 | 05 | 08 |
| DAM3-C-B8-E-420 |  | Installation of Solar power plant | 7d | 2027-01-19 | 2027-01-27 | DAM3-C-B7-E-420 |  |  |  |  | 7d | 0d | Plumber [112 h]; Construction Cost [253269] | 253,268.71 |  |  |  |  |  |  | 05 | 05 | 08 |

| ID | WBS | Activity | Duration | Start | Finish | Predecessors | Complete | Planned start | Planned finish | Resources | Cost | Actual cost | 00 Activity ID | AMH Tender Act. ID | Tender Original Duration | Zone # | Phasing Code Category | Discipline | Project component code |
| --- | --- | --- | --- | --- | --- | --- | --- | --- | --- | --- | --- | --- | --- | --- | --- | --- | --- | --- | --- |
|  | 10 | **BLOCK B9** |  | 2026-02-17 | 2027-02-06 |  |  |  |  |  |  |  |  |  |  |  |  |  |  |
|  | 1 | **STRUCTURAL** |  | 2026-02-17 | 2026-11-12 |  |  |  |  |  |  |  |  |  |  |  |  |  |  |
|  | 1 | **FOOTING** |  | 2026-02-17 | 2026-04-23 |  |  |  |  |  |  |  |  |  |  |  |  |  |  |
| DAM3-C-B9-S-150 |  | Excavation for footings | 4d | 2026-02-17 A | 2026-02-21 A | DAM3-C-B8-S-150 | 100% | 2026-03-28 | 2026-04-01 | General Labour [112 h]; Equipment Operator [112 h]; Truck [64 h]; Excavator [64 h]; Mini Roller Compactor [64 h]; Construction Cost [89859.6] | 89,859.61 | 89,859.61 | H1.C.K1.00.SW.F.1010 | PH1-MHR-ST-640 | 12 | 1 | 05 | 01 | 09 |
| DAM3-C-B9-S-6303 |  | Soil replacement - rock fill | 4d | 2026-03-03 A | 2026-03-07 A | DAM3-C-B9-S-150 | 100% | 2026-03-12 | 2026-03-16 | General Labour [256 h]; Truck [64 h]; Mini Roller Compactor [64 h]; Equipment Operator [256 h]; Wheel Loader [64 h]; Construction Cost [179062] | 179,061.91 | 179,061.91 | H1.C.K1.00.SW.F.1060 | PH1-MHR-ST-645 | 15 | 1 | 05 | 01 | 09 |
| DAM3-C-B9-S-6313 |  | Engineering fill | 4d | 2026-03-09 A | 2026-03-17 A | DAM3-C-B9-S-6303, DAM3-C-B9-S-6303 FF | 100% | 2026-03-23 | 2026-03-26 | General Labour [256 h]; Truck [64 h]; Mini Roller Compactor [64 h]; Equipment Operator [256 h]; Wheel Loader [64 h]; Construction Cost [46046.2] | 46,046.19 | 46,046.19 | H1.C.K1.00.SW.F.1060 | PH1-MHR-ST-645 | 15 | 1 | 05 | 01 | 09 |
| DAM3-C-B9-S-101 |  | Anti Termite Below Footings | 1d | 2026-03-29 A | 2026-03-29 A | DAM3-C-B9-S-6313 | 100% | 2026-04-02 | 2026-04-02 | Mason [16 h]; Construction Cost [11905.5] | 11,905.55 | 11,905.55 | H1.C.K1.00.SW.F.1030 | PH1-MHR-ST-1020 | 10 | 1 | 05 | 01 | 09 |
| DAM3-C-B9-S-102 |  | Vapour Barrier for Footings | 1d | 2026-03-29 A | 2026-03-29 A | DAM3-C-B9-S-101 | 100% | 2026-04-04 | 2026-04-04 | General Labour [16 h]; Construction Cost [7940.1] | 7,940.1 | 7,940.1 | H1.C.K1.00.SW.F.1040 | PH1-MHR-ST-1080 | 15 | 1 | 05 | 01 | 09 |
| DAM3-C-B9-S-103 |  | Lean Concrete Below Footings | 2d | 2026-03-30 A | 2026-03-30 A | DAM3-C-B9-S-102 | 100% | 2026-04-02 | 2026-04-04 | Mason [32 h]; Construction Cost [8229.34] | 8,229.34 | 8,229.34 | H1.C.K1.00.SW.F.1030 | PH1-MHR-ST-1020 | 10 | 1 | 05 | 01 | 09 |
| DAM3-C-B9-S-104 |  | Rebar for Footings | 4d | 2026-04-18 A | 2026-04-20 A | DAM3-C-B9-S-103, DAM3-C-B6-M-510 | 100% | 2026-06-29 | 2026-07-04 | Steel Fixer [64 h]; Construction Cost [101845] | 101,844.98 | 101,844.98 |  |  |  | 1 | 05 | 01 | 09 |
| DAM3-C-B9-S-105 |  | Formwork for Footings | 4d | 2026-04-19 A | 2026-04-21 A | DAM3-C-B9-S-104 | 100% | 2026-07-04 | 2026-07-08 | Carperter [64 h]; Construction Cost [25461.2] | 25,461.25 | 25,461.25 |  |  |  | 1 | 05 | 01 | 09 |
| DAM3-C-B9-S-106 |  | Pouring Concrete for Footings | 1d | 2026-04-23 A | 2026-04-23 A | DAM3-C-B9-S-105 | 100% | 2026-07-05 | 2026-07-06 | Carperter [16 h]; Mason [16 h]; Steel Fixer [16 h]; Concrete Mixer [8 h]; Equipment Operator [16 h]; Construction Cost [127306] | 127,306.23 | 127,306.23 | H1.C.K1.00.RC.F.1010 | PH1-MHR-ST-1030 | 21 | 1 | 05 | 01 | 09 |
|  | 2 | **COLUMN NECK** |  | 2026-04-21 | 2026-05-14 |  |  |  |  |  |  |  |  |  |  |  |  |  |  |
| DAM3-C-B9-S-257 |  | Rebar for column neck | 4d | 2026-04-21 A | 2026-04-22 A | DAM3-C-B9-S-106, DAM3-C-B5-M-1130 | 100% | 2026-07-05 | 2026-07-09 | Steel Fixer [64 h]; Construction Cost [14919.2] | 14,919.19 | 14,919.19 |  |  |  | 1 | 05 | 01 | 09 |
| DAM3-C-B9-S-267 |  | Formwork for column neck | 2d | 2026-04-22 A | 2026-04-23 A | DAM3-C-B9-S-257 | 100% | 2026-07-07 | 2026-07-09 | Carperter [32 h]; Construction Cost [9946.13] | 9,946.13 | 9,946.13 |  |  |  | 1 | 05 | 01 | 09 |
| DAM3-C-B9-S-297 |  | Pouring Concrete for column neck | 1d | 2026-04-28 A | 2026-04-28 A | DAM3-C-B9-S-267 | 100% | 2026-07-09 | 2026-07-11 | Mason [16 h]; Carperter [16 h]; Concrete Mixer [8 h]; Steel Fixer [16 h]; Equipment Operator [16 h]; Construction Cost [24865.3] | 24,865.31 | 24,865.31 | H1.C.K1.00.RC.F.1110 | PH1-MHR-ST-1030 | 21 | 1 | 05 | 01 | 09 |
| DAM3-C-B9-S-307 |  | Damp proof /Bitumin paint on Footings & column neck | 2d | 2026-05-02 A | 2026-05-02 A | DAM3-C-B9-S-297 | 100% | 2026-07-13 | 2026-07-15 | Painter [32 h]; Construction Cost [24777.7] | 24,777.73 | 24,777.73 | H1.C.K1.00.SW.F.1050 | PH1-MHR-ST-1080 | 15 | 1 | 05 | 01 | 09 |
| DAM3-C-B9-S-367 |  | Backfilling / Compaction up to Bottom of Grade Beams | 7d | 2026-05-09 A | 2026-05-14 A | DAM3-C-B9-S-307, DAM3-C-B4-M-820 | 100% | 2026-07-13 | 2026-07-21 | General Labour [256 h]; Truck [128 h]; Mini Roller Compactor [128 h]; Equipment Operator [256 h]; Wheel Loader [128 h]; Construction Cost [46046.2] | 46,046.19 | 46,046.19 | H1.C.K1.00.SW.F.1060 | PH1-MHR-ST-645 | 15 | 1 | 05 | 01 | 09 |
|  | 3 | **GRADE BEAM** |  | 2026-05-18 | 2026-06-07 |  |  |  |  |  |  |  |  |  |  |  |  |  |  |
| DAM3-C-B9-S-337 |  | Vapour barrier for Grade Beams | 2d | 2026-05-18 A | 2026-05-18 A | DAM3-C-B9-S-527 | 100% | 2026-07-19 | 2026-07-21 | General Labour [32 h]; Construction Cost [5293.4] | 5,293.4 | 5,293.4 | H1.C.K1.00.SW.F.1040 | PH1-MHR-ST-1080 | 15 | 1 | 05 | 01 | 09 |
| DAM3-C-B9-S-338 |  | Lean Concrete Below Grade Beams | 2d | 2026-05-18 A | 2026-05-18 A | DAM3-C-B9-S-337 | 100% | 2026-07-21 | 2026-07-23 | Mason [32 h]; Construction Cost [4431.19] | 4,431.19 | 4,431.19 | H1.C.K1.00.SW.F.1130 | PH1-MHR-ST-1020 | 10 | 1 | 05 | 01 | 09 |
| DAM3-C-B9-S-527 |  | Anti Termite Below Grade Beams | 1d | 2026-05-18 A | 2026-05-18 A | DAM3-C-B9-S-367, DAM3-C-B10-S-382 | 100% | 2026-07-18 | 2026-07-19 | Mason [16 h]; Construction Cost [11905.5] | 11,905.55 | 11,905.55 | H1.C.K1.00.SW.F.1030 | PH1-MHR-ST-1020 | 10 | 1 | 05 | 01 | 09 |
| DAM3-C-B9-S-339 |  | Rebar for Grade Beams | 5d | 2026-05-20 A | 2026-05-21 A | DAM3-C-B9-S-338, DAM3-C-B1-M-200 | 100% | 2026-08-27 | 2026-09-02 | Steel Fixer [80 h]; Construction Cost [27194.5] | 27,194.46 | 27,194.46 |  |  |  | 1 | 05 | 01 | 09 |
| DAM3-C-B9-S-341 |  | Anchor bolts installation | 2d | 2026-05-20 A | 2026-05-23 A | DAM3-C-B9-S-340 SS | 100% | 2026-09-01 | 2026-09-03 | Carperter [32 h]; Construction Cost [57238.8] | 57,238.83 | 57,238.83 |  |  |  | 1 | 05 | 01 | 09 |
| DAM3-C-B9-S-340 |  | Formwork for Grade Beams | 2d | 2026-05-21 A | 2026-05-24 A | DAM3-C-B9-S-339 | 100% | 2026-08-31 | 2026-09-02 | Carperter [32 h]; Construction Cost [6798.61] | 6,798.61 | 6,798.61 |  |  |  | 1 | 05 | 01 | 09 |
| DAM3-C-B9-S-342 |  | Pouring Concrete for Grade Beams | 1d | 2026-05-25 A | 2026-05-25 A | DAM3-C-B9-S-340, DAM3-C-B9-S-341, DAM3-C-B7-M-200, DAM3-C-B10-S-6133 | 100% | 2026-09-02 | 2026-09-03 | Mason [16 h]; Carperter [16 h]; Concrete Mixer [8 h]; Steel Fixer [16 h]; Equipment Operator [16 h]; Construction Cost [33993.1] | 33,993.09 | 33,993.09 | H1.C.K1.00.RC.F.1110 | PH1-MHR-ST-1030 | 21 | 1 | 05 | 01 | 09 |
| DAM3-C-B9-S-347 |  | Damp proof /Bitumin paint on Grade Beams | 5d | 2026-06-02 A | 2026-06-07 A | DAM3-C-B9-S-342 | 100% | 2026-08-18 | 2026-08-24 | Painter [80 h]; Construction Cost [24777.7] | 24,777.73 | 24,777.73 | H1.C.K1.00.SW.F.1050 | PH1-MHR-ST-1080 | 15 | 1 | 05 | 01 | 09 |

| ID | WBS | Activity | Duration | Start | Finish | Predecessors | Complete | Planned start | Planned finish | Total float | Free float | Resources | Cost | Actual cost | Zone # | Phasing Code Category | Discipline | Project component code | 00 Activity ID | AMH Tender Act. ID | Tender Original Duration | project summary-4 | PS (su & rbf)-4 | New code for weekly report-4 | New discipline code-4 |
| --- | --- | --- | --- | --- | --- | --- | --- | --- | --- | --- | --- | --- | --- | --- | --- | --- | --- | --- | --- | --- | --- | --- | --- | --- | --- |
|  | 5 | **SLAB ON GRADE** |  | 2026-06-09 | 2026-11-12 |  |  |  |  |  |  |  |  |  |  |  |  |  |  |  |  |  |  |  |  |
| DAM3-C-B9-S-377 |  | Backfilling / Compaction for Slab on Grade | 7d | 2026-06-09 A | 2026-06-13 A | DAM3-C-B9-S-347, DAM3-C-B8-M-200 | 100% | 2026-10-20 | 2026-10-27 |  |  | Mini Roller Compactor [128 h]; General Labour [256 h]; Equipment Operator [256 h]; Wheel Loader [128 h]; Truck [128 h]; Construction Cost [23023.1] | 23,023.09 | 23,023.09 | 1 | 05 | 01 | 09 |  |  |  |  |  |  |  |
| DAM3-C-B9-S-378 |  | Anti Termite Treatment below Ground Slab | 1d | 2026-07-22 A | 2026-07-25 A | DAM3-C-B9-S-377 | 100% | 2026-08-17 | 2026-08-17 |  |  | General Labour [16 h]; Construction Cost [15874.1] | 15,874.08 | 15,874.08 | 1 | 05 | 01 | 09 | H1.C.A1.06.SW.F.1220 | PH1-MHR-ST-645 | 15 |  |  |  |  |
| DAM3-C-B9-S-379 |  | Vapour barrier for below Ground Slab | 2d | 2026-07-22 A | 2026-07-25 A | DAM3-C-B9-S-378 | 100% | 2026-08-18 | 2026-08-19 |  |  | General Labour [32 h]; Construction Cost [13233.5] | 13,233.49 | 13,233.49 | 1 | 05 | 01 | 09 |  |  |  |  |  |  |  |
| DAM3-C-B9-S-382 |  | Pouring Concrete for Ground Slab | 4d | 2026-07-22 A | 2026-07-25 A | DAM3-C-B9-S-379 | 100% | 2026-08-20 | 2026-08-24 |  |  | Mason [64 h]; Carperter [64 h]; Steel Fixer [64 h]; Concrete Mixer [32 h]; Equipment Operator [64 h]; Construction Cost [344195] | 344,195.21 | 344,195.21 | 1 | 05 | 01 | 09 | H1.C.A1.06.RC.G.1210 | PH1-MHR-ST-496 | 24 |  |  |  |  |
| DAM3-C-B9-S-517 |  | Concrete pad | 7d | 2026-11-05 | 2026-11-12 | DAM3-C-B9-A-0150 |  |  |  | 60.5d | 4d | Mason [112 h]; Construction Cost [907.11] | 907.11 |  |  | 05 | 01 | 09 |  |  |  |  |  |  |  |
|  | 4 | **COLUMNS & BEAMS** |  | 2026-05-21 | 2026-09-12 |  |  |  |  |  |  |  |  |  |  |  |  |  |  |  |  |  |  |  |  |
| DAM3-C-B9-S-6101 |  | Rebar for Tie Beams | 4d | 2026-05-21 A | 2026-06-07 A | DAM3-C-B9-S-5103 | 100% | 2026-11-08 | 2026-11-11 |  |  | Steel Fixer [64 h]; Construction Cost [7263.64] | 7,263.64 | 7,263.64 | 1 | 05 | 01 | 09 |  |  |  | 3 | 1 | 4 | 1 |
| DAM3-C-B9-S-6102 |  | Formwork for Tie Beams | 2d | 2026-05-23 A | 2026-06-08 A | DAM3-C-B9-S-6101 | 100% | 2026-11-12 | 2026-11-14 |  |  | Carperter [32 h]; Construction Cost [1815.91] | 1,815.91 | 1,815.91 | 1 | 05 | 01 | 09 |  |  |  | 3 | 1 | 4 | 1 |
| DAM3-C-B9-S-6103 |  | Pouring Concrete for Tie Beams | 1d | 2026-05-25 A | 2026-06-09 A | DAM3-C-B9-S-6102 | 100% | 2026-11-15 | 2026-11-15 |  |  | Mason [16 h]; Carperter [16 h]; Concrete Mixer [32 h]; Steel Fixer [16 h]; Equipment Operator [16 h]; Construction Cost [9079.54] | 9,079.54 | 9,079.54 | 1 | 05 | 01 | 09 | H1.C.K1.00.RC.F.1110 | PH1-MHR-ST-1030 | 21 | 3 | 1 | 4 | 1 |
| DAM3-C-B9-S-5101 |  | Rebar for column | 5d | 2026-07-11 A | 2026-07-14 A | DAM3-C-B9-S-377, DAM3-C-B10-M-200, DAM3-C-B9-M-200 | 100% | 2026-08-20 | 2026-08-25 |  |  | Steel Fixer [112 h]; Construction Cost [20144] | 20,144.05 | 20,144.05 | 1 | 05 | 01 | 09 |  |  |  | 3 | 1 | 4 | 1 |
| DAM3-C-B9-S-5102 |  | Formwork for column | 4d | 2026-07-14 A | 2026-07-28 A | DAM3-C-B9-S-5101, S001-C-TC-M-100, DAM3-C-B11-M-200 | 100% | 2026-08-26 | 2026-08-31 |  |  | Carperter [64 h]; Construction Cost [5036.01] | 5,036.01 | 5,036.01 | 1 | 05 | 01 | 09 |  |  |  | 3 | 1 | 4 | 1 |
| DAM3-C-B9-S-5103 |  | Pouring Concrete for column | 1d | 2026-07-15 A | 2026-07-29 A | DAM3-C-B9-S-5102 | 100% | 2026-08-30 | 2026-08-31 |  |  | Mason [16 h]; Carperter [16 h]; Concrete Mixer [32 h]; Steel Fixer [16 h]; Equipment Operator [16 h]; Construction Cost [25180.1] | 25,180.06 | 25,180.06 | 1 | 05 | 01 | 09 | H1.C.K1.00.RC.F.1110 | PH1-MHR-ST-1030 | 21 | 3 | 1 | 4 | 1 |
| DAM3-C-B9-S-6113 |  | Rebar for Beams | 4d | 2026-08-23 A | 2026-08-26 A | DAM3-C-B9-S-6103 | 100% | 2026-09-07 | 2026-09-10 |  |  | Steel Fixer [64 h]; Construction Cost [13379.1] | 13,379.11 | 13,379.11 | 1 | 05 | 01 | 09 |  |  |  | 3 | 1 | 4 | 1 |
| DAM3-C-B9-S-6123 |  | Formwork for Beams | 2d | 2026-09-01 A | 2026-09-05 A | DAM3-C-B9-S-6113, DAM3-C-B9-S-6113 FF | 100% | 2026-09-14 | 2026-09-15 |  |  | Carperter [32 h]; Construction Cost [3344.77] | 3,344.77 | 3,344.77 | 1 | 05 | 01 | 09 |  |  |  | 3 | 1 | 4 | 1 |
| DAM3-C-B9-S-6133 |  | Pouring Concrete for Beams | 1d | 2026-09-08 A | 2026-09-12 A | DAM3-C-B9-S-6123, DAM3-C-B9-S-6123 FF | 100% | 2026-09-12 | 2026-09-13 |  |  | Mason [16 h]; Carperter [16 h]; Concrete Mixer [32 h]; Steel Fixer [16 h]; Equipment Operator [16 h]; Construction Cost [16723.9] | 16,723.88 | 16,723.88 | 1 | 05 | 01 | 09 | H1.C.K1.00.RC.F.1110 | PH1-MHR-ST-1030 | 21 | 3 | 1 | 4 | 1 |
|  | 5 | **STRUCTURAL STEEL** |  | 2026-06-16 | 2026-11-12 |  |  |  |  |  |  |  |  |  |  |  |  |  |  |  |  |  |  |  |  |
| DAM3-C-B9-SS-0100 |  | Installation of columns | 3d | 2026-06-16 A | 2026-06-17 A | DAM3-C-B9-S-382, DAM3-C-B8-SS-0110 SS | 100% | 2026-12-17 | 2026-12-20 |  |  | Structural Steel Fixer [80 h]; General Labour [80 h]; Equipment Operator [80 h]; Mobile Crane [24 h]; Construction Cost [217508] | 217,507.55 | 217,507.55 |  | 05 | 02 | 09 |  |  |  |  |  |  |  |
| DAM3-C-B9-SS-0110 |  | Installation of raft and purlins | 5d | 2026-06-18 A | 2026-06-22 A | DAM3-C-B9-SS-0100, DAM3-C-B9-S-6133 | 100% | 2026-12-21 | 2026-12-26 |  |  | Structural Steel Fixer [160 h]; General Labour [160 h]; Mobile Crane [56 h]; Equipment Operator [160 h]; Construction Cost [326261] | 326,261.32 | 326,261.32 |  | 05 | 02 | 09 |  |  |  |  |  |  |  |
| DAM3-C-B9-SS-610 |  | Intumescent paint to steel works | 7d | 2026-07-05 A | 2026-07-07 A | DAM3-C-B9-SS-0110, S001-C-TC-E-3606 | 100% | 2026-11-23 | 2026-12-01 |  |  | Painter [112 h]; Construction Cost [317760] | 317,759.56 | 317,759.56 | 1 | 05 | 02 | 09 | H1.C.A1.SA.FI.G.0730 |  |  |  |  |  |  |
| DAM3-C-B9-SS-0140 |  | Installation of roof sheet | 5d | 2026-07-22 A | 2026-08-01 A | DAM3-C-B9-A-0120, DAM3-C-B9-SS-610, DAM3-C-B9-S-6133 | 100% | 2026-12-14 | 2026-12-20 |  |  | Roof sheet worker [160 h]; General Labour [160 h]; Mobile Crane [40 h]; Equipment Operator [160 h]; Construction Cost [217508] | 217,507.55 | 217,507.55 |  | 05 | 02 | 09 |  |  |  |  |  |  |  |
| DAM3-C-B9-SS-0130 |  | Installation of wall sandwich panel | 5d | 2026-09-03 A | 2026-10-05 A | DAM3-C-B9-A-0150 | 100% | 2026-11-01 | 2026-11-05 |  |  | Sandwich panel worker [112 h]; General Labour [112 h]; Mobile Crane [40 h]; Equipment Operator [112 h]; Construction Cost [326261] | 326,261.32 | 326,261.32 |  | 05 | 02 | 09 |  |  |  |  |  |  |  |
| DAM3-C-B9-SS-1030 |  | Steel members for external platform | 7d | 2026-09-21 A | 2026-09-26 A | DAM3-C-B9-SS-620 | 100% | 2026-11-01 | 2026-11-08 |  |  | Construction Cost [18670.8]; General Labour [112 h]; Mobile Crane [56 h]; Structural Steel Fixer [112 h]; Equipment Operator [112 h] | 18,670.78 | 18,670.78 | 1 | 05 | 02 | 09 | H1.C.A1.SA.FI.G.0730 |  |  |  |  |  |  |
| DAM3-C-B9-SS-620 |  | Steel members for office area | 2d | 2026-09-27 A | 2026-09-29 A | DAM3-C-B9-SS-610, DAM3-C-B9-SS-0110 | 100% | 2026-11-03 | 2026-11-04 |  |  | Construction Cost [115805]; Structural Steel Fixer [112 h]; Mobile Crane [56 h]; General Labour [112 h]; Equipment Operator [112 h] | 115,805.2 | 115,805.2 | 1 | 05 | 02 | 09 | H1.C.A1.SA.FI.G.0730 |  |  |  |  |  |  |
| DAM3-C-B9-SS-1020 |  | Epoxy paint to steel members at office area | 7d | 2026-11-05 | 2026-11-12 | DAM3-C-B9-SS-620 |  |  |  | 55.8d | 0d | Painter [112 h]; Construction Cost [23161] | 23,161.04 |  | 1 | 05 | 02 | 09 | H1.C.A1.SA.FI.G.0730 |  |  |  |  |  |  |
| DAM3-C-B9-SS-1040 |  | Epoxy paint for external platform | 5d | 2026-11-05 | 2026-11-10 | DAM3-C-B9-SS-1030, DAM3-C-B9-SS-1030 FF |  |  |  | 62.5d | 6d | Painter [80 h]; Construction Cost [3734.16] | 3,734.16 |  | 1 | 05 | 02 | 09 | H1.C.A1.SA.FI.G.0730 |  |  |  |  |  |  |

| ID | WBS | Activity | Duration | Start | Finish | Predecessors | Complete | Remaining | Planned start | Planned finish | Total float | Free float | Resources | Cost | Actual cost | Phasing Code Category | Discipline | Project component code | Zone # | 00 Activity ID |
| --- | --- | --- | --- | --- | --- | --- | --- | --- | --- | --- | --- | --- | --- | --- | --- | --- | --- | --- | --- | --- |
|  | 2 | **ARCHITECTURAL** |  | 2026-07-27 | 2027-01-26 |  |  |  |  |  |  |  |  |  |  |  |  |  |  |  |
|  | 1 | **MASONARY WORKS** |  | 2026-07-28 | 2026-08-29 |  |  |  |  |  |  |  |  |  |  |  |  |  |  |  |
| DAM3-C-B9-A-0120 |  | Block work at factory area | 10d | 2026-07-28 A | 2026-07-30 A | DAM3-C-B9-S-382, DAM3-C-B9-SS-0110 | 100% |  | 2026-12-08 | 2026-12-19 |  |  | AAC panel erector [240 h]; General Labour [240 h]; Equipment Operator [240 h]; Mobile Crane [120 h]; Construction Cost [58338.7] | 58,338.72 | 58,338.72 | 05 | 03 | 09 |  |  |
| DAM3-C-B9-A-0150 |  | Block work at office area | 5d | 2026-07-30 A | 2026-08-27 A | DAM3-C-B9-SS-0140 SS, DAM3-C-B9-SS-620 | 100% |  | 2026-12-17 | 2026-12-22 |  |  | AAC panel erector [160 h]; General Labour [160 h]; Mobile Crane [56 h]; Equipment Operator [160 h]; Construction Cost [6179.18] | 6,179.18 | 6,179.18 | 05 | 03 | 09 |  |  |
| DAM3-C-B9-A-170 |  | Block work at toilet area | 5d | 2026-08-02 A | 2026-08-29 A | DAM3-C-B9-A-0150, DAM3-C-B9-SS-1020 | 100% |  | 2026-12-24 | 2026-12-29 |  |  | Mason [112 h]; Construction Cost [14436.3] | 14,436.31 | 14,436.31 | 05 | 03 | 09 | 1 |  |
|  | 5 | **WALL FINISHES** |  | 2026-09-17 | 2026-12-01 |  |  |  |  |  |  |  |  |  |  |  |  |  |  |  |
| DAM3-C-B9-A-180 |  | Internal Wall Plaster | 5d | 2026-09-17 A | 2026-10-05 A | DAM3-C-B9-A-170, DAM3-C-B9-E-183, DAM3-C-B9-SS-1040, DAM3-C-B9-SS-0130, DAM3-C-B9-S-517 | 100% |  | 2026-11-14 | 2026-11-18 |  |  | Mason [240 h]; Construction Cost [48590.2] | 48,590.16 | 48,590.16 | 05 | 03 | 09 | 1 | H1.C.A1.SA.FI.G.0710 |
| DAM3-C-B9-A-230 |  | Paint to Plaster (Primer, Putty & First Coat) | 4d | 2026-10-03 A | 2026-12-01 | DAM3-C-B9-A-250 | 80% | 0.8d | 2026-12-10 | 2026-12-14 | 57.7d | 0d | Painter [112 h]; Construction Cost [44167.3] | 44,167.3 | 35,333.84 | 05 | 03 | 09 | 1 | H1.C.A1.SA.FI.G.0730 |
|  | 2 | **CIELING FINISHES** |  | 2026-11-25 | 2026-11-28 |  |  |  |  |  |  |  |  |  |  |  |  |  |  |  |
| DAM3-C-B9-A-240 |  | Installation of Ceiling Gypsum Board | 3d | 2026-11-25 | 2026-11-28 | DAM3-C-B9-A-220, DAM3-C-B9-S-517 |  |  |  |  | 56d | 0d | Carperter [80 h]; Construction Cost [46792.3] | 46,792.3 |  | 05 | 03 | 09 | 1 | H1.C.A1.SA.FI.G.0820 |
|  | 6 | **FLOOR FINISHES** |  | 2026-10-01 | 2027-01-26 |  |  |  |  |  |  |  |  |  |  |  |  |  |  |  |
| DAM3-C-B9-A-220 |  | Tiles for Toilet | 4d | 2026-10-01 A | 2026-10-07 A | DAM3-C-B9-A-370 | 100% |  | 2026-12-01 | 2026-12-06 |  |  | Tile Fixer [112 h]; Construction Cost [46530.7] | 46,530.71 | 46,530.71 | 05 | 03 | 09 | 1 | H1.C.A1.SA.FI.G.0640 |
| DAM3-C-B9-A-250 |  | Tiles for Office Area | 2d | 2026-11-29 | 2026-11-30 | DAM3-C-B9-A-240 |  |  |  |  | 56d | 0d | Tile Fixer [32 h]; Construction Cost [26867.3] | 26,867.31 |  | 05 | 03 | 09 |  |  |
| DAM3-C-B9-A-390 |  | Granite strip | 2d | 2026-12-01 | 2026-12-02 | DAM3-C-B9-A-558, DAM3-C-B9-A-250 |  |  |  |  | 56d | 0d | Tile Fixer [32 h]; Construction Cost [671.12] | 671.12 |  | 05 | 03 | 09 | 1 | H1.C.A1.SA.FI.G.0640 |
| DAM3-C-B9-A-420 |  | Epoxy paint | 4d | 2027-01-21 | 2027-01-26 | DAM3-C-B9-A-340 |  |  |  |  | 26.9d | 25.9d | Painter [112 h]; Construction Cost [115420] | 115,419.76 |  | 05 | 03 | 09 |  |  |
|  | 3 | **DOORS & WINDOWS** |  | 2026-09-30 | 2026-11-19 |  |  |  |  |  |  |  |  |  |  |  |  |  |  |  |
| DAM3-C-B9-A-558 |  | Skylight fixtures installation | 1d | 2026-09-30 A | 2026-10-04 A | DAM3-C-B9-A-557 | 100% |  | 2026-11-25 | 2026-11-26 |  |  | Carperter [16 h]; Construction Cost [6489.89] | 6,489.89 | 6,489.89 | 05 | 03 | 09 |  |  |
| DAM3-C-B9-A-552 |  | Window (CW1) | 7d | 2026-11-05 | 2026-11-12 | DAM3-C-B9-SS-0130 |  |  |  |  | 54.5d | 0d | Carperter [112 h]; Construction Cost [94173.2] | 94,173.21 |  | 05 | 03 | 09 |  |  |
| DAM3-C-B9-A-553 |  | Roll up Shutter Door | 1d | 2026-11-14 | 2026-11-14 | DAM3-C-B9-A-552 |  |  |  |  | 54.5d | 0d | Carperter [16 h]; Construction Cost [68619.2] | 68,619.2 |  | 05 | 03 | 09 |  |  |
| DAM3-C-B9-A-200 |  | Supply and install (D5) 1000*2200mm single leaf steel door with door | 1d | 2026-11-15 | 2026-11-15 | DAM3-C-B9-A-553 |  |  |  |  | 54.5d | 0d | Carperter [16 h]; Construction Cost [16016.2] | 16,016.16 |  | 05 | 03 | 09 |  |  |
| DAM3-C-B9-A-554 |  | Supply and install (D4) 800*2200 mm single leaf aluminum door with door | 1d | 2026-11-16 | 2026-11-16 | DAM3-C-B9-A-200 |  |  |  |  | 54.5d | 0d | Carperter [16 h]; Construction Cost [22737.8] | 22,737.85 |  | 05 | 03 | 09 |  |  |
| DAM3-C-B9-A-555 |  | Supply and install (D7) 1000*2200 mm single leaf aluminum door with door | 1d | 2026-11-17 | 2026-11-17 | DAM3-C-B9-A-554 |  |  |  |  | 54.5d | 0d | Carperter [16 h]; Construction Cost [7811.07] | 7,811.07 |  | 05 | 03 | 09 |  |  |
| DAM3-C-B9-A-556 |  | Supply and install (D3) 1000*2200 mm single leaf aluminum door with door | 1d | 2026-11-18 | 2026-11-18 | DAM3-C-B9-A-555 |  |  |  |  | 54.5d | 0d | Carperter [16 h]; Construction Cost [16016.2] | 16,016.16 |  | 05 | 03 | 09 |  |  |
| DAM3-C-B9-A-557 |  | Supply and install fire rated 45 min (D2) 1200*2200 mm single leaf steel door | 1d | 2026-11-19 | 2026-11-19 | DAM3-C-B9-A-556 |  |  |  |  | 54.5d | 0d | Carperter [16 h]; Construction Cost [16711.5] | 16,711.52 |  | 05 | 03 | 09 |  |  |

| ID | WBS | Activity | Duration | Start | Finish | Predecessors | Complete | Remaining | Planned start | Planned finish | Total float | Free float | Resources | Cost | Actual cost | Phasing Code Category | Discipline | Project component code | Ordinal Start | Ordinal Finish | 00 Activity ID | Ordinal Duration | Zone # |
| --- | --- | --- | --- | --- | --- | --- | --- | --- | --- | --- | --- | --- | --- | --- | --- | --- | --- | --- | --- | --- | --- | --- | --- |
|  | 4 | **WATER PROOFING WORKS** |  | 2026-11-21 | 2026-11-24 |  |  |  |  |  |  |  |  |  |  |  |  |  |  |  |  |  |  |
| DAM3-C-B9-A-370 |  | Waterproofing membrane for toilets | 4d | 2026-11-21 | 2026-11-24 | DAM3-C-B9-M-200, DAM3-C-B9-A-180, DAM3-C-B9-A-558 |  |  |  |  | 54.5d | 0d | General Labour [64 h]; Construction Cost [4879.02] | 4,879.02 |  | 05 | 03 | 09 |  |  |  |  |  |
|  | 7 | **METAL WORKS** |  | 2026-07-27 | 2026-12-10 |  |  |  |  |  |  |  |  |  |  |  |  |  |  |  |  |  |  |
| DAM3-C-B9-A-300 |  | Galvanised Steel Gratings | 2d | 2026-07-27 A | 2026-07-27 A | DAM3-C-B9-A-292, DAM3-C-B8-E-203 | 100% |  | 2027-02-15 | 2027-02-17 |  |  | Steel Fixer [32 h]; General Labour [32 h]; Construction Cost [6455.16] | 6,455.16 | 6,455.16 | 05 | 03 | 09 |  |  |  |  |  |
| DAM3-C-B9-A-292 |  | Aluminium composite panel | 3d | 2026-09-29 A | 2026-12-10 | DAM3-C-B9-A-291 | 50% | 1.5d | 2026-12-17 | 2026-12-20 | 56d | 29.1d | Steel Fixer [80 h]; General Labour [80 h]; Construction Cost [175889] | 175,888.76 | 87,944.38 | 05 | 03 | 09 |  |  |  |  |  |
| DAM3-C-B9-A-290 |  | Steel Ladder | 2d | 2026-12-03 | 2026-12-05 | DAM3-C-B9-A-390 |  |  |  |  | 56d | 0d | Steel Fixer [32 h]; General Labour [32 h]; Construction Cost [9839.16] | 9,839.16 |  | 05 | 03 | 09 |  |  |  |  |  |
| DAM3-C-B9-A-291 |  | Steel railing works | 3d | 2026-12-06 | 2026-12-08 | DAM3-C-B9-A-290 |  |  |  |  | 56d | 0d | Steel Fixer [64 h]; General Labour [64 h]; Construction Cost [1533.98] | 1,533.98 |  | 05 | 03 | 09 |  |  |  |  |  |
|  | 8 | **SPECIALTIES** |  | 2027-01-13 | 2027-01-21 |  |  |  |  |  |  |  |  |  |  |  |  |  |  |  |  |  |  |
| DAM3-C-B9-A-320 |  | Installation of fittings | 3d | 2027-01-13 | 2027-01-17 | DAM3-C-B9-A-300, DAM3-C-B8-M-330 |  |  |  |  | 26.9d | 0d | Plumber [80 h]; Construction Cost [22981.3] | 22,981.27 |  | 05 | 03 | 09 |  |  |  |  |  |
| DAM3-C-B9-A-570 |  | Identification sign; ID01 & ID02 | 3d | 2027-01-17 | 2027-01-20 | DAM3-C-B9-A-320 |  |  |  |  | 26.9d | 0d | Mason [48 h]; Construction Cost [9630.56] | 9,630.56 |  | 05 | 03 | 09 |  |  |  |  |  |
| DAM3-C-B9-A-340 |  | Furniture Installation | 1d | 2027-01-20 | 2027-01-21 | DAM3-C-B9-A-570 |  |  |  |  | 26.9d | 0d | General Labour [16 h]; Mason [16 h]; Construction Cost [12468.8] | 12,468.83 |  | 05 | 03 | 09 |  |  |  |  |  |
|  | 3 | **MECHANICAL** |  | 2026-06-21 | 2026-12-21 |  |  |  |  |  |  |  |  |  |  |  |  |  |  |  |  |  |  |
|  | 1 | **HVAC** |  | 2026-12-01 | 2026-12-17 |  |  |  |  |  |  |  |  |  |  |  |  |  |  |  |  |  |  |
|  | 1 | **FIRST STAGE** |  | 2026-12-08 | 2026-12-13 |  |  |  |  |  |  |  |  |  |  |  |  |  |  |  |  |  |  |
| DAM3-C-B9-M-140 |  | Installation of HVAC Ducts | 2d | 2026-12-08 | 2026-12-10 | DAM3-C-B9-M-160 |  |  |  |  | 57.7d | 0d | Ductman [32 h]; Construction Cost [149489] | 149,489.33 |  | 05 | 04 | 09 | 0 | 0 | H1.C.A1.0A.MH.G.1040 | 0 | 1 |
| DAM3-C-B9-M-170 |  | Installation of Duct insulation | 2d | 2026-12-10 | 2026-12-13 | DAM3-C-B9-M-140 |  |  |  |  | 57.7d | 0d | Ductman [32 h]; Construction Cost [21205.4] | 21,205.4 |  | 05 | 04 | 09 |  |  |  |  |  |
|  | 2 | **SECOND STAGE** |  | 2026-12-01 | 2026-12-17 |  |  |  |  |  |  |  |  |  |  |  |  |  |  |  |  |  |  |
| DAM3-C-B9-M-130 |  | Installation of Exhaust Fans | 2d | 2026-12-01 | 2026-12-03 | DAM3-C-B9-A-230 |  |  |  |  | 57.7d | 0d | AC Technician [32 h]; Construction Cost [7938.56] | 7,938.56 |  | 05 | 04 | 09 | 0 | 0 | H1.C.A1.0A.MH.X.4050 | 0 | 1 |
| DAM3-C-B9-M-160 |  | Installation of Wall Propeller Type Exhaust Fan | 4d | 2026-12-03 | 2026-12-08 | DAM3-C-B9-M-130 |  |  |  |  | 57.7d | 0d | AC Technician [64 h]; Construction Cost [46831.6] | 46,831.64 |  | 05 | 04 | 09 |  |  |  |  |  |
| DAM3-C-B9-M-339 |  | Installation of Diffuser | 2d | 2026-12-13 | 2026-12-15 | DAM3-C-B9-M-170 |  |  |  |  | 57.7d | 0d | Ductman [32 h]; Construction Cost [2144] | 2,144 |  | 05 | 04 | 09 | 0 | 0 | H1.C.A1.0A.MH.G.3010 | 0 | 1 |
| DAM3-C-B9-M-340 |  | Supply, install, test and commission door grilles & exhaust louvers | 2d | 2026-12-15 | 2026-12-17 | DAM3-C-B9-M-339 |  |  |  |  | 57.7d | 0d | Ductman [32 h]; Construction Cost [5574.4] | 5,574.4 |  | 05 | 04 | 09 | 0 | 0 | H1.C.A1.0A.MH.G.3010 | 0 | 1 |
|  | 2 | **FIRE FIGHTING SYSTEM** |  | 2026-08-17 | 2026-12-21 |  |  |  |  |  |  |  |  |  |  |  |  |  |  |  |  |  |  |
|  | 1 | **FIRST STAGE** |  | 2026-08-17 | 2026-08-23 |  |  |  |  |  |  |  |  |  |  |  |  |  |  |  |  |  |  |
| DAM3-C-B9-M-300 |  | Installation of Fire Fighting Pipes (Seamless Black Steel) | 5d | 2026-08-17 A | 2026-08-22 A | DAM3-C-B9-A-230 | 100% |  | 2026-12-10 | 2026-12-16 |  |  | Pipe Fitter [112 h]; Construction Cost [72394.8] | 72,394.75 | 72,394.75 | 05 | 04 | 09 | 0 | 0 | H1.C.A1.0A.MF.G.1010 | 0 | 1 |
| DAM3-C-B9-M-310 |  | Installation of Fire Fighting Valve | 5d | 2026-08-17 A | 2026-08-23 A | DAM3-C-B9-M-300 | 100% |  | 2026-12-16 | 2026-12-22 |  |  | Pipe Fitter [80 h]; Construction Cost [12199.4] | 12,199.4 | 12,199.4 | 05 | 04 | 09 | 0 | 0 | H1.C.A1.0A.MF.G.2010 | 0 | 1 |

| ID | WBS | Activity | Duration | Start | Finish | Predecessors | Complete | Remaining | Planned start | Planned finish | Total float | Free float | Resources | Cost | Actual cost | Ordinal Start | Ordinal Finish | 00 Activity ID | Ordinal Duration | Zone # | Phasing Code Category | Discipline | Project component code |
| --- | --- | --- | --- | --- | --- | --- | --- | --- | --- | --- | --- | --- | --- | --- | --- | --- | --- | --- | --- | --- | --- | --- | --- |
|  | 2 | **SECOND STAGE** |  | 2026-12-01 | 2026-12-21 |  |  |  |  |  |  |  |  |  |  |  |  |  |  |  |  |  |  |
| DAM3-C-B9-M-320 |  | Installation of Fire Hose Cabinet | 3d | 2026-12-01 | 2026-12-05 | DAM3-C-B9-M-310 |  |  |  |  | 67.7d | 65.2d | Pipe Fitter [48 h]; Construction Cost [15158.6] | 15,158.56 |  | 0 | 0 | H1.C.A1.0A.MF.G.3010 | 0 | 1 | 05 | 04 | 09 |
| DAM3-C-B9-M-370 |  | Supply, install, test and commission Fire Department Connection(FDC) | 3d | 2026-12-17 | 2026-12-21 | DAM3-C-B9-M-340 |  |  |  |  | 57.7d | 56.7d | Pipe Fitter [48 h]; Construction Cost [2706.06] | 2,706.06 |  | 0 | 0 | H1.C.A1.0A.MF.G.3010 | 0 | 1 | 05 | 04 | 09 |
|  | 3 | **SEWER AND DRAINAGE SYSTEM** |  | 2026-06-21 | 2026-12-13 |  |  |  |  |  |  |  |  |  |  |  |  |  |  |  |  |  |  |
|  | 1 | **FIRST STAGE** |  | 2026-06-21 | 2026-11-26 |  |  |  |  |  |  |  |  |  |  |  |  |  |  |  |  |  |  |
| DAM3-C-B9-M-200 |  | Installation of Sanitary Waste / Drainage Pipes | 4d | 2026-06-21 A | 2026-06-24 A | DAM3-C-B9-S-347 | 100% |  | 2026-08-01 | 2026-08-04 |  |  | Plumber [64 h]; Construction Cost [18585.1] | 18,585.14 | 18,585.14 | 0 | 0 | H1.C.K1.00.MP.G.1020 | 0 | 1 | 05 | 04 | 09 |
| DAM3-C-B9-M-380 |  | Installation of Trench drain | 5d | 2026-06-22 A | 2026-06-24 A | DAM3-C-B9-M-220 | 100% |  | 2027-01-27 | 2027-02-02 |  |  | Plumber [80 h]; Construction Cost [11508.8] | 11,508.8 | 11,508.8 |  |  |  |  |  | 05 | 04 | 09 |
| DAM3-C-B9-M-220 |  | Installation of Floor Drain | 2d | 2026-11-25 | 2026-11-26 | DAM3-C-B9-M-200, DAM3-C-B9-A-220 |  |  |  |  | 54.5d | 0d | Plumber [32 h]; Construction Cost [11056] | 11,055.96 |  |  |  |  |  | 1 | 05 | 04 | 09 |
|  | 2 | **SECOND STAGE** |  | 2026-11-28 | 2026-12-13 |  |  |  |  |  |  |  |  |  |  |  |  |  |  |  |  |  |  |
| DAM3-C-B9-M-180 |  | Installation of Electric Water Heater | 2d | 2026-11-28 | 2026-11-29 | DAM3-C-B9-M-380 |  |  |  |  | 54.5d | 0d | Plumber [32 h]; Construction Cost [1819.51] | 1,819.51 |  | 0 | 0 | H1.C.K1.00.MP.G.1030 | 0 | 1 | 05 | 04 | 09 |
| DAM3-C-B9-M-190 |  | Installation of Sanitary Fixture and Accessories | 4d | 2026-11-30 | 2026-12-03 | DAM3-C-B9-M-180 |  |  |  |  | 54.5d | 0d | Plumber [64 h]; Construction Cost [19921.7] | 19,921.72 |  | 0 | 0 | H1.C.K1.00.MP.G.2040 | 0 | 1 | 05 | 04 | 09 |
| DAM3-C-B9-M-210 |  | Installation of Lavotary /Wash Basin | 2d | 2026-12-05 | 2026-12-06 | DAM3-C-B9-M-180, DAM3-C-B9-M-190 |  |  |  |  | 54.5d | 0d | Plumber [32 h]; Construction Cost [21416.7] | 21,416.68 |  |  |  |  |  | 1 | 05 | 04 | 09 |
| DAM3-C-B9-M-270 |  | Installation of Bib Tap | 2d | 2026-12-07 | 2026-12-08 | DAM3-C-B9-M-190, DAM3-C-B9-M-210 |  |  |  |  | 54.5d | 0d | Plumber [32 h]; Construction Cost [1900.66] | 1,900.66 |  |  |  |  |  |  | 05 | 04 | 09 |
| DAM3-C-B9-M-428 |  | Installation of Water Tap | 2d | 2026-12-09 | 2026-12-10 | DAM3-C-B9-M-210, DAM3-C-B9-M-270 |  |  |  |  | 54.5d | 0d | Plumber [32 h]; Construction Cost [2874.14] | 2,874.14 |  |  |  |  |  |  | 05 | 04 | 09 |
| DAM3-C-B9-M-429 |  | Installation of Roof Vent Cap | 2d | 2026-12-12 | 2026-12-13 | DAM3-C-B9-M-428 |  |  |  |  | 54.5d | 2.5d | Pipe Fitter [32 h]; Construction Cost [927.12] | 927.12 |  |  |  |  |  |  | 05 | 04 | 09 |
|  | 4 | **WATER SUPPLY SYSTEM** |  | 2026-09-14 | 2026-12-07 |  |  |  |  |  |  |  |  |  |  |  |  |  |  |  |  |  |  |
|  | 1 | **FIRST STAGE** |  | 2026-09-14 | 2026-09-19 |  |  |  |  |  |  |  |  |  |  |  |  |  |  |  |  |  |  |
| DAM3-C-B9-M-290 |  | Installation of Water Supply Pipes | 4d | 2026-09-14 A | 2026-09-19 A | DAM3-C-B9-A-230 | 100% |  | 2026-12-10 | 2026-12-15 |  |  | Plumber [64 h]; Construction Cost [23318.4] | 23,318.41 | 23,318.41 | 0 | 0 | H1.C.K1.00.MP.G.1010 | 0 | 1 | 05 | 04 | 09 |
| DAM3-C-B9-M-280 |  | Installation of Water Supply Valve | 2d | 2026-09-15 A | 2026-09-19 A | DAM3-C-B9-M-290 | 100% |  | 2026-12-13 | 2026-12-15 |  |  | Plumber [32 h]; Construction Cost [18274.3] | 18,274.27 | 18,274.27 | 0 | 0 | H1.C.K1.00.MP.G.2010 | 0 | 1 | 05 | 04 | 09 |
|  | 2 | **SECOND STAGE** |  | 2026-12-01 | 2026-12-07 |  |  |  |  |  |  |  |  |  |  |  |  |  |  |  |  |  |  |
| DAM3-C-B9-M-330 |  | Capped connection | 5d | 2026-12-01 | 2026-12-07 | DAM3-C-B9-M-280 |  |  |  |  | 69.7d | 68.7d | Plumber [80 h]; Construction Cost [278.13] | 278.13 |  |  |  |  |  |  | 05 | 04 | 09 |
|  | 4 | **ELECTRICAL** |  | 2026-05-20 | 2027-02-06 |  |  |  |  |  |  |  |  |  |  |  |  |  |  |  |  |  |  |
|  | 1 | **FIRST STAGE** |  | 2026-05-20 | 2026-12-14 |  |  |  |  |  |  |  |  |  |  |  |  |  |  |  |  |  |  |
| DAM3-C-B9-E-113 |  | Installation of Earthing and Grounding | 3d | 2026-05-20 A | 2026-12-14 | DAM3-C-B9-E-223 | 90% | 0.3d | 2027-02-14 | 2027-02-17 | 61.5d | 48.7d | Electrician [80 h]; Construction Cost [19646.5] | 19,646.47 | 17,681.82 |  |  | H1.C.K1.00.EM.G.2040 |  | 1 | 05 | 05 | 09 |
| DAM3-C-B9-E-143 |  | Installation of Conduits and wiring outlets - Fire Alarm System | 4d | 2026-05-21 A | 2026-11-15 | DAM3-C-B9-A-170 | 50% | 2d | 2027-01-10 | 2027-01-14 | 55.8d | 0d | Electrician [64 h]; Construction Cost [1768.31] | 1,768.31 | 884.15 |  |  | H1.C.K1.00.EL.G.1020 |  | 1 | 05 | 05 | 09 |
| DAM3-C-B9-E-183 |  | Installation of Sleeves & Power outlet | 8d | 2026-05-21 A | 2026-11-17 | DAM3-C-B9-A-170 | 50% | 4d | 2027-01-10 | 2027-01-19 | 56.5d | 0d | Electrician [128 h]; Construction Cost [2920.45] | 2,920.45 | 1,460.23 |  |  |  |  | 1 | 05 | 05 | 09 |
| DAM3-C-B9-E-163 |  | Installation of Conduites for Lighting Fixture | 4d | 2026-09-08 A | 2026-11-25 | DAM3-C-B9-E-133 | 90% | 0.4d | 2026-11-21 | 2026-11-24 | 55.8d | 0d | Electrician [64 h]; Construction Cost [8462.97] | 8,462.97 | 7,616.67 |  |  | H1.C.K1.00.EM.G.2030 |  | 1 | 05 | 05 | 09 |
| DAM3-C-B9-E-233 |  | Installation of Wires | 4d | 2026-11-25 | 2026-11-30 | DAM3-C-B9-E-163 |  |  |  |  | 55.8d | 0d | Electrician [64 h]; Construction Cost [16925.9] | 16,925.94 |  |  |  |  |  |  | 05 | 05 | 09 |
| DAM3-C-B9-E-223 |  | Installation of LV Cables | 4d | 2026-12-09 | 2026-12-14 | DAM3-C-B9-E-213 |  |  |  |  | 61.5d | 0d | Electrician [64 h]; Construction Cost [36390] | 36,389.98 |  |  |  |  |  |  | 05 | 05 | 09 |

| ID | WBS | Activity | Duration | Start | Finish | Predecessors | Complete | Planned start | Planned finish | Total float | Free float | Resources | Cost | Actual cost | 00 Activity ID | Zone # | Phasing Code Category | Discipline | Project component code | AMH Tender Act. ID | Tender Original Duration |
| --- | --- | --- | --- | --- | --- | --- | --- | --- | --- | --- | --- | --- | --- | --- | --- | --- | --- | --- | --- | --- | --- |
|  | 2 | **SECOND STAGE** |  | 2026-11-16 | 2027-02-06 |  |  |  |  |  |  |  |  |  |  |  |  |  |  |  |  |
| DAM3-C-B9-E-123 |  | Installation of Fire Alarm Control Panel | 4d | 2026-11-16 | 2026-11-19 | DAM3-C-B9-E-143 |  |  |  | 55.8d | 0d | Electrician [64 h]; Construction Cost [19451.4] | 19,451.37 |  | H1.C.K1.00.EL.X.4120 | 1 | 05 | 05 | 09 |  |  |
| DAM3-C-B9-E-133 |  | Installation of Fire Detectors & Accessories | 4d | 2026-11-21 | 2026-11-24 | DAM3-C-B9-E-123 |  |  |  | 55.8d | 0d | Electrician [64 h]; Construction Cost [56740.4] | 56,740.37 |  | H1.C.K1.00.EL.G.3020 | 1 | 05 | 05 | 09 |  |  |
| DAM3-C-B9-E-153 |  | Installation of Lighting fixtures | 4d | 2026-11-30 | 2026-12-05 | DAM3-C-B9-E-233 |  |  |  | 65.1d | 0d | Electrician [64 h]; Construction Cost [76166.7] | 76,166.74 |  | H1.C.K1.00.EM.G.3010 | 1 | 05 | 05 | 09 |  |  |
| DAM3-C-B9-E-193 |  | Installation of Main Distribution Board | 2d | 2026-11-30 | 2026-12-02 | DAM3-C-B9-E-233 |  |  |  | 55.8d | 0d | Electrician [32 h]; Construction Cost [32472.7] | 32,472.73 |  | H1.C.K1.00.EM.G.2020 | 1 | 05 | 05 | 09 |  |  |
| DAM3-C-B9-E-410 |  | Installation of CCTV System | 5d | 2026-11-30 | 2026-12-06 | DAM3-C-B9-E-233 |  |  |  | 57.8d | 0d | Plumber [112 h]; Construction Cost [76349.2] | 76,349.24 |  |  |  | 05 | 05 | 09 |  |  |
| DAM3-C-B9-E-173 |  | Installation of Wiring Devices | 4d | 2026-12-01 | 2026-12-06 | DAM3-C-B9-E-183, DAM3-C-B9-A-230 |  |  |  | 60.7d | 0d | Electrician [64 h]; Construction Cost [19435.1] | 19,435.09 |  | H1.C.K1.00.EM.G.3020 | 1 | 05 | 05 | 09 |  |  |
| DAM3-C-B9-E-243 |  | Installation of LP-1 Panel | 2d | 2026-12-02 | 2026-12-05 | DAM3-C-B9-E-193 |  |  |  | 55.8d | 0d | Electrician [32 h]; Construction Cost [18403.5] | 18,403.54 |  | H1.C.K1.00.EM.G.2020 | 1 | 05 | 05 | 09 |  |  |
| DAM3-C-B9-E-253 |  | Installation of PP-AC panel | 2d | 2026-12-05 | 2026-12-07 | DAM3-C-B9-E-243 |  |  |  | 55.8d | 0d | Electrician [32 h]; Construction Cost [21648.5] | 21,648.48 |  | H1.C.K1.00.EM.G.2020 | 1 | 05 | 05 | 09 |  |  |
| DAM3-C-B9-E-273 |  | Installation of Access Control System | 5d | 2026-12-06 | 2026-12-12 | DAM3-C-B9-E-410 |  |  |  | 57.8d | 0d | Electrician [80 h]; Construction Cost [27616.9] | 27,616.86 |  | H1.C.K1.00.EM.G.2040 | 1 | 05 | 05 | 09 |  |  |
| DAM3-C-B9-E-203 |  | Installation of Disconnect Switches | 2d | 2026-12-06 | 2026-12-08 | DAM3-C-B9-E-173 |  |  |  | 60.7d | 49.2d | Electrician [32 h]; Construction Cost [30236] | 30,235.95 |  |  |  | 05 | 05 | 09 |  |  |
| DAM3-C-B9-E-213 |  | Installation of Telephone Cabinet | 2d | 2026-12-07 | 2026-12-09 | DAM3-C-B9-E-253 |  |  |  | 55.8d | 0d | Electrician [32 h]; Construction Cost [26991.1] | 26,991.08 |  |  | 1 | 05 | 05 | 09 |  |  |
| DAM3-C-B9-E-283 |  | Monitor Modules for Fire Alarm | 2d | 2026-12-12 | 2026-12-14 | DAM3-C-B9-E-273 |  |  |  | 57.8d | 0d | Electrician [32 h]; Construction Cost [3882.38] | 3,882.38 |  | H1.C.K1.00.EM.G.2040 | 1 | 05 | 05 | 09 |  |  |
| DAM3-C-B9-E-293 |  | Line Isolator Modules for Fire Alarm | 2d | 2026-12-14 | 2026-12-16 | DAM3-C-B9-E-283 |  |  |  | 57.8d | 0d | Electrician [32 h]; Construction Cost [185.4] | 185.4 |  | H1.C.K1.00.EM.G.2040 | 1 | 05 | 05 | 09 |  |  |
| DAM3-C-B9-E-303 |  | Firewarning flash light with sounder; wall mounted, Weather proof | 2d | 2026-12-16 | 2026-12-19 | DAM3-C-B9-E-293 |  |  |  | 57.8d | 50.6d | Electrician [32 h]; Construction Cost [3082.69] | 3,082.69 |  | H1.C.K1.00.EM.G.2040 | 1 | 05 | 05 | 09 |  |  |
| DAM3-C-B9-E-420 |  | Installation of Solar power plant | 8d | 2027-01-27 | 2027-02-06 | DAM3-C-B8-E-420 |  |  |  | 7d | 0d | Plumber [112 h]; Construction Cost [253269] | 253,268.71 |  |  |  | 05 | 05 | 09 |  |  |
|  | 11 | **BLOCK B10** |  | 2026-02-18 | 2027-02-11 |  |  |  |  |  |  |  |  |  |  |  |  |  |  |  |  |
|  | 1 | **STRUCTURAL** |  | 2026-02-18 | 2026-11-12 |  |  |  |  |  |  |  |  |  |  |  |  |  |  |  |  |
|  | 1 | **FOOTING** |  | 2026-02-18 | 2026-04-28 |  |  |  |  |  |  |  |  |  |  |  |  |  |  |  |  |
| DAM3-C-B10-S-150 |  | Excavation for footings | 4d | 2026-02-18 A | 2026-03-03 A | DAM3-C-B9-S-150 | 100% | 2026-04-01 | 2026-04-06 |  |  | General Labour [112 h]; Equipment Operator [112 h]; Truck [64 h]; Excavator [64 h]; Mini Roller Compactor [64 h]; Construction Cost [89859.6] | 89,859.61 | 89,859.61 | H1.C.K1.00.SW.F.1010 | 1 | 05 | 01 | 10 | PH1-MHR-ST-640 | 12 |
| DAM3-C-B10-S-6323 |  | Soil replacement - rock fill | 4d | 2026-03-07 A | 2026-03-11 A | DAM3-C-B10-S-150 | 100% | 2026-03-15 | 2026-03-22 |  |  | General Labour [256 h]; Truck [64 h]; Mini Roller Compactor [64 h]; Equipment Operator [256 h]; Wheel Loader [64 h]; Construction Cost [179062] | 179,061.91 | 179,061.91 | H1.C.K1.00.SW.F.1060 | 1 | 05 | 01 | 10 | PH1-MHR-ST-645 | 15 |
| DAM3-C-B10-S-6333 |  | Engineering fill | 4d | 2026-03-18 A | 2026-03-31 A | DAM3-C-B10-S-6323, DAM3-C-B10-S-6323 FF | 100% | 2026-03-25 | 2026-03-29 |  |  | General Labour [256 h]; Truck [64 h]; Mini Roller Compactor [64 h]; Equipment Operator [256 h]; Wheel Loader [64 h]; Construction Cost [46046.2] | 46,046.19 | 46,046.19 | H1.C.K1.00.SW.F.1060 | 1 | 05 | 01 | 10 | PH1-MHR-ST-645 | 15 |
| DAM3-C-B10-S-101 |  | Anti Termite Below Footings | 1d | 2026-04-01 A | 2026-04-01 A | DAM3-C-B10-S-6333 | 100% | 2026-04-12 | 2026-04-12 |  |  | Mason [16 h]; Construction Cost [11905.5] | 11,905.55 | 11,905.55 | H1.C.K1.00.SW.F.1030 | 1 | 05 | 01 | 10 | PH1-MHR-ST-1020 | 10 |
| DAM3-C-B10-S-102 |  | Vapour Barrier for Footings | 1d | 2026-04-01 A | 2026-04-01 A | DAM3-C-B10-S-101 | 100% | 2026-04-13 | 2026-04-13 |  |  | General Labour [16 h]; Construction Cost [7940.1] | 7,940.1 | 7,940.1 | H1.C.K1.00.SW.F.1040 | 1 | 05 | 01 | 10 | PH1-MHR-ST-1080 | 15 |
| DAM3-C-B10-S-103 |  | Lean Concrete Below Footings | 2d | 2026-04-01 A | 2026-04-01 A | DAM3-C-B10-S-102, DAM3-E-SS-C-890, DAM3-E-SS-M-660, DAM3-E-SS-E-990, DAM3-E-SS-EX-760 | 100% | 2026-04-27 | 2026-04-28 |  |  | Mason [32 h]; Construction Cost [8229.34] | 8,229.34 | 8,229.34 | H1.C.K1.00.SW.F.1030 | 1 | 05 | 01 | 10 | PH1-MHR-ST-1020 | 10 |
| DAM3-C-B10-S-104 |  | Rebar for Footings | 4d | 2026-04-23 A | 2026-04-23 A | DAM3-C-B10-S-103 | 100% | 2026-05-13 | 2026-05-17 |  |  | Steel Fixer [64 h]; Construction Cost [101845] | 101,844.98 | 101,844.98 |  | 1 | 05 | 01 | 10 |  |  |
| DAM3-C-B10-S-105 |  | Formwork for Footings | 4d | 2026-04-23 A | 2026-04-25 A | DAM3-C-B10-S-104 | 100% | 2026-05-17 | 2026-05-20 |  |  | Carperter [64 h]; Construction Cost [25461.2] | 25,461.25 | 25,461.25 |  | 1 | 05 | 01 | 10 |  |  |
| DAM3-C-B10-S-106 |  | Pouring Concrete for Footings | 1d | 2026-04-28 A | 2026-04-28 A | DAM3-C-B10-S-105 | 100% | 2026-05-13 | 2026-05-13 |  |  | Carperter [16 h]; Mason [16 h]; Steel Fixer [16 h]; Concrete Mixer [8 h]; Equipment Operator [16 h]; Construction Cost [127306] | 127,306.23 | 127,306.23 | H1.C.K1.00.RC.F.1010 | 1 | 05 | 01 | 10 | PH1-MHR-ST-1030 | 21 |

| ID | WBS | Activity | Duration | Start | Finish | Predecessors | Complete | Planned start | Planned finish | Total float | Free float | Resources | Cost | Actual cost | Zone # | Phasing Code Category | Discipline | Project component code | 00 Activity ID | AMH Tender Act. ID | Tender Original Duration | project summary-4 | PS (su & rbf)-4 | New code for weekly report-4 | New discipline code-4 |
| --- | --- | --- | --- | --- | --- | --- | --- | --- | --- | --- | --- | --- | --- | --- | --- | --- | --- | --- | --- | --- | --- | --- | --- | --- | --- |
|  | 2 | **COLUMN NECK** |  | 2026-04-26 | 2026-05-20 |  |  |  |  |  |  |  |  |  |  |  |  |  |  |  |  |  |  |  |  |
| DAM3-C-B10-S-257 |  | Rebar for column neck | 4d | 2026-04-26 A | 2026-04-27 A | DAM3-C-B10-S-106 | 100% | 2026-05-17 | 2026-05-20 |  |  | Steel Fixer [64 h]; Construction Cost [14919.2] | 14,919.19 | 14,919.19 | 1 | 05 | 01 | 10 |  |  |  |  |  |  |  |
| DAM3-C-B10-S-267 |  | Formwork for column neck | 2d | 2026-04-27 A | 2026-05-04 A | DAM3-C-B10-S-257 | 100% | 2026-05-18 | 2026-05-19 |  |  | Carperter [32 h]; Construction Cost [9946.13] | 9,946.13 | 9,946.13 | 1 | 05 | 01 | 10 |  |  |  |  |  |  |  |
| DAM3-C-B10-S-297 |  | Pouring Concrete for column neck | 1d | 2026-05-02 A | 2026-05-05 A | DAM3-C-B10-S-267 | 100% | 2026-05-20 | 2026-05-20 |  |  | Mason [16 h]; Carperter [16 h]; Concrete Mixer [8 h]; Steel Fixer [16 h]; Equipment Operator [16 h]; Construction Cost [24865.3] | 24,865.31 | 24,865.31 | 1 | 05 | 01 | 10 | H1.C.K1.00.RC.F.1110 | PH1-MHR-ST-1030 | 21 |  |  |  |  |
| DAM3-C-B10-S-307 |  | Damp proof /Bitumin paint on Footings & column neck | 2d | 2026-05-05 A | 2026-05-09 A | DAM3-C-B10-S-297 | 100% | 2026-05-21 | 2026-05-23 |  |  | Painter [32 h]; Construction Cost [24777.7] | 24,777.73 | 24,777.73 | 1 | 05 | 01 | 10 | H1.C.K1.00.SW.F.1050 | PH1-MHR-ST-1080 | 15 |  |  |  |  |
| DAM3-C-B10-S-367 |  | Backfilling / Compaction up to Bottom of Grade Beams | 7d | 2026-05-13 A | 2026-05-20 A | DAM3-C-B10-S-307 | 100% | 2026-06-01 | 2026-06-08 |  |  | General Labour [256 h]; Truck [128 h]; Mini Roller Compactor [128 h]; Equipment Operator [256 h]; Wheel Loader [128 h]; Construction Cost [46046.2] | 46,046.19 | 46,046.19 | 1 | 05 | 01 | 10 | H1.C.K1.00.SW.F.1060 | PH1-MHR-ST-645 | 15 |  |  |  |  |
|  | 3 | **GRADE BEAM** |  | 2026-05-25 | 2026-06-15 |  |  |  |  |  |  |  |  |  |  |  |  |  |  |  |  |  |  |  |  |
| DAM3-C-B10-S-337 |  | Vapour barrier for Grade Beams | 2d | 2026-05-25 A | 2026-05-25 A | DAM3-C-B10-S-527 | 100% | 2026-06-10 | 2026-06-11 |  |  | General Labour [32 h]; Construction Cost [5293.4] | 5,293.4 | 5,293.4 | 1 | 05 | 01 | 10 | H1.C.K1.00.SW.F.1040 | PH1-MHR-ST-1080 | 15 |  |  |  |  |
| DAM3-C-B10-S-338 |  | Lean Concrete Below Grade Beams | 2d | 2026-05-25 A | 2026-05-25 A | DAM3-C-B10-S-337 | 100% | 2026-06-13 | 2026-06-14 |  |  | Mason [32 h]; Construction Cost [4431.19] | 4,431.19 | 4,431.19 | 1 | 05 | 01 | 10 | H1.C.K1.00.SW.F.1130 | PH1-MHR-ST-1020 | 10 |  |  |  |  |
| DAM3-C-B10-S-527 |  | Anti Termite Below Grade Beams | 1d | 2026-05-25 A | 2026-05-25 A | DAM3-C-B10-S-367 | 100% | 2026-06-09 | 2026-06-09 |  |  | Mason [16 h]; Construction Cost [11905.5] | 11,905.55 | 11,905.55 | 1 | 05 | 01 | 10 | H1.C.K1.00.SW.F.1030 | PH1-MHR-ST-1020 | 10 |  |  |  |  |
| DAM3-C-B10-S-339 |  | Rebar for Grade Beams | 5d | 2026-05-31 A | 2026-06-03 A | DAM3-C-B10-S-338 | 100% | 2026-06-15 | 2026-06-20 |  |  | Steel Fixer [80 h]; Construction Cost [27194.5] | 27,194.46 | 27,194.46 | 1 | 05 | 01 | 10 |  |  |  |  |  |  |  |
| DAM3-C-B10-S-341 |  | Anchor bolts installation | 2d | 2026-06-02 A | 2026-06-03 A | DAM3-C-B10-S-340 SS | 100% | 2026-06-13 | 2026-06-15 |  |  | Carperter [32 h]; Construction Cost [57238.8] | 57,238.83 | 57,238.83 | 1 | 05 | 01 | 10 |  |  |  |  |  |  |  |
| DAM3-C-B10-S-340 |  | Formwork for Grade Beams | 2d | 2026-06-07 A | 2026-06-09 A | DAM3-C-B10-S-339 | 100% | 2026-06-15 | 2026-06-16 |  |  | Carperter [32 h]; Construction Cost [6798.61] | 6,798.61 | 6,798.61 | 1 | 05 | 01 | 10 |  |  |  |  |  |  |  |
| DAM3-C-B10-S-342 |  | Pouring Concrete for Grade Beams | 1d | 2026-06-09 A | 2026-06-09 A | DAM3-C-B10-S-340, DAM3-C-B10-S-341 | 100% | 2026-06-17 | 2026-06-17 |  |  | Mason [16 h]; Carperter [16 h]; Concrete Mixer [8 h]; Steel Fixer [16 h]; Equipment Operator [16 h]; Construction Cost [33993.1] | 33,993.09 | 33,993.09 | 1 | 05 | 01 | 10 | H1.C.K1.00.RC.F.1110 | PH1-MHR-ST-1030 | 21 |  |  |  |  |
| DAM3-C-B10-S-347 |  | Damp proof /Bitumin paint on Grade Beams | 5d | 2026-06-14 A | 2026-06-15 A | DAM3-C-B10-S-342 | 100% | 2026-06-22 | 2026-06-27 |  |  | Painter [80 h]; Construction Cost [24777.7] | 24,777.73 | 24,777.73 | 1 | 05 | 01 | 10 | H1.C.K1.00.SW.F.1050 | PH1-MHR-ST-1080 | 15 |  |  |  |  |
|  | 5 | **SLAB ON GRADE** |  | 2026-06-16 | 2026-11-12 |  |  |  |  |  |  |  |  |  |  |  |  |  |  |  |  |  |  |  |  |
| DAM3-C-B10-S-377 |  | Backfilling / Compaction for Slab on Grade | 7d | 2026-06-16 A | 2026-06-22 A | DAM3-C-B10-S-347 | 100% | 2026-07-01 | 2026-07-09 |  |  | Mini Roller Compactor [128 h]; General Labour [256 h]; Equipment Operator [256 h]; Wheel Loader [128 h]; Truck [128 h]; Construction Cost [23023.1] | 23,023.09 | 23,023.09 | 1 | 05 | 01 | 10 |  |  |  |  |  |  |  |
| DAM3-C-B10-S-378 |  | Anti Termite Treatment below Ground Slab | 1d | 2026-07-18 A | 2026-07-21 A | DAM3-C-B10-S-377 | 100% | 2026-07-28 | 2026-07-28 |  |  | General Labour [16 h]; Construction Cost [15874.1] | 15,874.08 | 15,874.08 | 1 | 05 | 01 | 10 | H1.C.A1.06.SW.F.1220 | PH1-MHR-ST-645 | 15 |  |  |  |  |
| DAM3-C-B10-S-379 |  | Vapour barrier for below Ground Slab | 2d | 2026-07-18 A | 2026-07-21 A | DAM3-C-B10-S-378 | 100% | 2026-07-29 | 2026-07-30 |  |  | General Labour [32 h]; Construction Cost [13233.5] | 13,233.49 | 13,233.49 | 1 | 05 | 01 | 10 |  |  |  |  |  |  |  |
| DAM3-C-B10-S-382 |  | Pouring Concrete for Ground Slab | 4d | 2026-07-18 A | 2026-07-21 A | DAM3-C-B10-S-379 | 100% | 2026-08-01 | 2026-08-04 |  |  | Mason [64 h]; Carperter [64 h]; Steel Fixer [64 h]; Concrete Mixer [32 h]; Equipment Operator [64 h]; Construction Cost [344195] | 344,195.21 | 344,195.21 | 1 | 05 | 01 | 10 | H1.C.A1.06.RC.G.1210 | PH1-MHR-ST-496 | 24 |  |  |  |  |
| DAM3-C-B10-S-517 |  | Concrete pad | 7d | 2026-11-05 | 2026-11-12 | DAM3-C-B10-A-0150 |  |  |  | 62d | 0d | Mason [112 h]; Construction Cost [907.11] | 907.11 |  |  | 05 | 01 | 10 |  |  |  |  |  |  |  |
|  | 4 | **COLUMNS & BEAMS** |  | 2026-06-01 | 2026-09-16 |  |  |  |  |  |  |  |  |  |  |  |  |  |  |  |  |  |  |  |  |
| DAM3-C-B10-S-6101 |  | Rebar for Tie Beams | 4d | 2026-06-01 A | 2026-06-03 A | DAM3-C-B10-S-5103 | 100% | 2026-07-14 | 2026-07-18 |  |  | Steel Fixer [64 h]; Construction Cost [7263.64] | 7,263.64 | 7,263.64 | 1 | 05 | 01 | 10 |  |  |  | 3 | 1 | 4 | 1 |
| DAM3-C-B10-S-6102 |  | Formwork for Tie Beams | 2d | 2026-06-07 A | 2026-06-08 A | DAM3-C-B10-S-6101 | 100% | 2026-07-19 | 2026-07-20 |  |  | Carperter [32 h]; Construction Cost [1815.91] | 1,815.91 | 1,815.91 | 1 | 05 | 01 | 10 |  |  |  | 3 | 1 | 4 | 1 |
| DAM3-C-B10-S-6103 |  | Pouring Concrete for Tie Beams | 1d | 2026-06-09 A | 2026-06-09 A | DAM3-C-B10-S-6102 | 100% | 2026-07-21 | 2026-07-21 |  |  | Mason [16 h]; Carperter [16 h]; Concrete Mixer [32 h]; Steel Fixer [16 h]; Equipment Operator [16 h]; Construction Cost [9079.54] | 9,079.54 | 9,079.54 | 1 | 05 | 01 | 10 | H1.C.K1.00.RC.F.1110 | PH1-MHR-ST-1030 | 21 | 3 | 1 | 4 | 1 |
| DAM3-C-B10-S-5101 |  | Rebar for column | 5d | 2026-07-12 A | 2026-07-16 A | DAM3-C-B10-S-377, DAM3-C-B10-M-200 | 100% | 2026-07-22 | 2026-07-27 |  |  | Steel Fixer [112 h]; Construction Cost [20144] | 20,144.05 | 20,144.05 | 1 | 05 | 01 | 10 |  |  |  | 3 | 1 | 4 | 1 |
| DAM3-C-B10-S-5102 |  | Formwork for column | 4d | 2026-08-04 A | 2026-08-06 A | DAM3-C-B10-S-5101 | 100% | 2026-08-04 | 2026-08-08 |  |  | Carperter [64 h]; Construction Cost [5036.01] | 5,036.01 | 5,036.01 | 1 | 05 | 01 | 10 |  |  |  | 3 | 1 | 4 | 1 |
| DAM3-C-B10-S-5103 |  | Pouring Concrete for column | 1d | 2026-08-05 A | 2026-08-09 A | DAM3-C-B10-S-5102 | 100% | 2026-08-08 | 2026-08-08 |  |  | Mason [16 h]; Carperter [16 h]; Concrete Mixer [32 h]; Steel Fixer [16 h]; Equipment Operator [16 h]; Construction Cost [25180.1] | 25,180.06 | 25,180.06 | 1 | 05 | 01 | 10 | H1.C.K1.00.RC.F.1110 | PH1-MHR-ST-1030 | 21 | 3 | 1 | 4 | 1 |
| DAM3-C-B10-S-6113 |  | Rebar for Beams | 4d | 2026-08-31 A | 2026-09-02 A | DAM3-C-B10-S-6103 | 100% | 2026-09-02 | 2026-09-06 |  |  | Steel Fixer [64 h]; Construction Cost [13379.1] | 13,379.11 | 13,379.11 | 1 | 05 | 01 | 10 |  |  |  | 3 | 1 | 4 | 1 |
| DAM3-C-B10-S-6123 |  | Formwork for Beams | 2d | 2026-09-08 A | 2026-09-15 A | DAM3-C-B10-S-6113 | 100% | 2026-09-13 | 2026-09-14 |  |  | Carperter [32 h]; Construction Cost [3344.77] | 3,344.77 | 3,344.77 | 1 | 05 | 01 | 10 |  |  |  | 3 | 1 | 4 | 1 |
| DAM3-C-B10-S-6133 |  | Pouring Concrete for Beams | 1d | 2026-09-12 A | 2026-09-16 A | DAM3-C-B10-S-6123 | 100% | 2026-09-15 | 2026-09-15 |  |  | Mason [16 h]; Carperter [16 h]; Concrete Mixer [32 h]; Steel Fixer [16 h]; Equipment Operator [16 h]; Construction Cost [16723.9] | 16,723.88 | 16,723.88 | 1 | 05 | 01 | 10 | H1.C.K1.00.RC.F.1110 | PH1-MHR-ST-1030 | 21 | 3 | 1 | 4 | 1 |

| ID | WBS | Activity | Duration | Start | Finish | Predecessors | Complete | Remaining | Planned start | Planned finish | Total float | Free float | Resources | Cost | Actual cost | Phasing Code Category | Discipline | Project component code | 00 Activity ID | Zone # |
| --- | --- | --- | --- | --- | --- | --- | --- | --- | --- | --- | --- | --- | --- | --- | --- | --- | --- | --- | --- | --- |
|  | 5 | **STRUCTURAL STEEL** |  | 2026-06-25 | 2026-11-10 |  |  |  |  |  |  |  |  |  |  |  |  |  |  |  |
| DAM3-C-B10-SS-0100 |  | Installation of columns | 3d | 2026-06-25 A | 2026-06-25 A | DAM3-C-B10-S-382, DAM3-C-B9-SS-0110 SS | 100% |  | 2026-11-16 | 2026-11-18 |  |  | Structural Steel Fixer [80 h]; General Labour [80 h]; Equipment Operator [80 h]; Mobile Crane [24 h]; Construction Cost [217508] | 217,507.55 | 217,507.55 | 05 | 02 | 10 |  |  |
| DAM3-C-B10-SS-0110 |  | Installation of raft and purlins | 5d | 2026-06-25 A | 2026-06-28 A | DAM3-C-B10-SS-0100, DAM3-C-B10-S-6133 | 100% |  | 2026-11-19 | 2026-11-24 |  |  | Structural Steel Fixer [160 h]; General Labour [160 h]; Mobile Crane [56 h]; Equipment Operator [160 h]; Construction Cost [326261] | 326,261.32 | 326,261.32 | 05 | 02 | 10 |  |  |
| DAM3-C-B10-SS-610 |  | Intumescent paint to steel works | 7d | 2026-07-07 A | 2026-08-11 A | DAM3-C-B10-SS-0110 | 100% |  | 2026-11-23 | 2026-12-01 |  |  | Painter [112 h]; Construction Cost [317760] | 317,759.56 | 317,759.56 | 05 | 02 | 10 | H1.C.A1.SA.FI.G.0730 | 1 |
| DAM3-C-B10-SS-0140 |  | Installation of roof sheet | 3d | 2026-08-13 A | 2026-08-16 A | DAM3-C-B10-A-0120, DAM3-C-B10-SS-610, DAM3-C-B10-S-6133 | 100% |  | 2026-12-27 | 2026-12-30 |  |  | Roof sheet worker [160 h]; General Labour [160 h]; Mobile Crane [40 h]; Equipment Operator [160 h]; Construction Cost [217508] | 217,507.55 | 217,507.55 | 05 | 02 | 10 |  |  |
| DAM3-C-B10-SS-0130 |  | Installation of wall sandwich panel | 5d | 2026-09-03 A | 2026-09-30 A | DAM3-C-B10-A-0150, DAM3-C-B10-SS-1020 | 100% |  | 2026-11-08 | 2026-11-14 |  |  | Sandwich panel worker [112 h]; General Labour [112 h]; Mobile Crane [40 h]; Equipment Operator [112 h]; Construction Cost [326261] | 326,261.32 | 326,261.32 | 05 | 02 | 10 |  |  |
| DAM3-C-B10-SS-1030 |  | Steel members for external platform | 7d | 2026-09-26 A | 2026-10-06 A | DAM3-C-B10-SS-620 | 100% |  | 2026-11-09 | 2026-11-16 |  |  | Construction Cost [18670.8]; General Labour [112 h]; Mobile Crane [56 h]; Structural Steel Fixer [112 h]; Equipment Operator [112 h] | 18,670.78 | 18,670.78 | 05 | 02 | 10 | H1.C.A1.SA.FI.G.0730 | 1 |
| DAM3-C-B10-SS-620 |  | Steel members for office area | 4d | 2026-09-29 A | 2026-09-30 A | DAM3-C-B10-SS-610, DAM3-C-B10-SS-0110 | 100% |  | 2026-11-05 | 2026-11-09 |  |  | Construction Cost [115805]; Structural Steel Fixer [112 h]; Mobile Crane [56 h]; General Labour [112 h]; Equipment Operator [112 h] | 115,805.2 | 115,805.2 | 05 | 02 | 10 | H1.C.A1.SA.FI.G.0730 | 1 |
| DAM3-C-B10-SS-1020 |  | Epoxy paint to steel members at office area | 4d | 2026-11-05 | 2026-11-09 | DAM3-C-B10-SS-620 |  |  |  |  | 52d | 0d | Painter [112 h]; Construction Cost [23161] | 23,161.04 |  | 05 | 02 | 10 | H1.C.A1.SA.FI.G.0730 | 1 |
| DAM3-C-B10-SS-1040 |  | Epoxy paint for external platform | 5d | 2026-11-05 | 2026-11-10 | DAM3-C-B10-SS-1030, DAM3-C-B10-SS-1030 FF |  |  |  |  | 64d | 2d | Painter [80 h]; Construction Cost [3734.16] | 3,734.16 |  | 05 | 02 | 10 | H1.C.A1.SA.FI.G.0730 | 1 |
|  | 2 | **ARCHITECTURAL** |  | 2026-07-23 | 2026-12-28 |  |  |  |  |  |  |  |  |  |  |  |  |  |  |  |
|  | 1 | **MASONARY WORKS** |  | 2026-08-02 | 2026-09-03 |  |  |  |  |  |  |  |  |  |  |  |  |  |  |  |
| DAM3-C-B10-A-0120 |  | Block work at factory area | 3d | 2026-08-02 A | 2026-08-23 A | DAM3-C-B10-S-382, DAM3-C-B10-SS-0110 | 100% |  | 2026-12-14 | 2026-12-16 |  |  | AAC panel erector [240 h]; General Labour [240 h]; Equipment Operator [240 h]; Mobile Crane [120 h]; Construction Cost [58338.7] | 58,338.72 | 58,338.72 | 05 | 03 | 10 |  |  |
| DAM3-C-B10-A-0150 |  | Block work at office area | 4d | 2026-08-08 A | 2026-09-01 A | DAM3-C-B10-SS-0140 SS, DAM3-C-B10-SS-620 | 100% |  | 2026-12-22 | 2026-12-27 |  |  | AAC panel erector [160 h]; General Labour [160 h]; Mobile Crane [56 h]; Equipment Operator [160 h]; Construction Cost [6179.18] | 6,179.18 | 6,179.18 | 05 | 03 | 10 |  |  |
| DAM3-C-B10-A-170 |  | Block work at toilet area | 5d | 2026-08-11 A | 2026-09-03 A | DAM3-C-B10-A-0150 | 100% |  | 2026-12-31 | 2027-01-05 |  |  | Mason [112 h]; Construction Cost [14436.3] | 14,436.31 | 14,436.31 | 05 | 03 | 10 |  | 1 |
|  | 5 | **WALL FINISHES** |  | 2026-09-21 | 2026-12-07 |  |  |  |  |  |  |  |  |  |  |  |  |  |  |  |
| DAM3-C-B10-A-180 |  | Internal Wall Plaster | 5d | 2026-09-21 A | 2026-10-12 A | DAM3-C-B10-A-170, DAM3-C-B10-E-183, DAM3-C-B10-SS-1040, DAM3-C-B10-S-517 | 100% |  | 2026-11-18 | 2026-11-23 |  |  | Mason [240 h]; Construction Cost [48590.2] | 48,590.16 | 48,590.16 | 05 | 03 | 10 | H1.C.A1.SA.FI.G.0710 | 1 |
| DAM3-C-B10-A-230 |  | Paint to Plaster (Primer, Putty & First Coat) | 5d | 2026-10-08 A | 2026-12-07 | DAM3-C-B10-A-250 | 50% | 2.5d | 2026-12-19 | 2026-12-23 | 52.5d | 0d | Painter [112 h]; Construction Cost [44167.3] | 44,167.3 | 22,083.65 | 05 | 03 | 10 | H1.C.A1.SA.FI.G.0730 | 1 |
|  | 2 | **CIELING FINISHES** |  | 2026-12-05 | 2026-12-09 |  |  |  |  |  |  |  |  |  |  |  |  |  |  |  |
| DAM3-C-B10-A-240 |  | Installation of Ceiling Gypsum Board | 4d | 2026-12-05 | 2026-12-09 | DAM3-C-B10-A-220, DAM3-C-B10-S-517, DAM3-C-B9-E-153 |  |  |  |  | 65.1d | 13.1d | Carperter [80 h]; Construction Cost [46792.3] | 46,792.3 |  | 05 | 03 | 10 | H1.C.A1.SA.FI.G.0820 | 1 |
|  | 6 | **FLOOR FINISHES** |  | 2026-10-11 | 2026-12-28 |  |  |  |  |  |  |  |  |  |  |  |  |  |  |  |
| DAM3-C-B10-A-220 |  | Tiles for Toilet | 5d | 2026-10-11 A | 2026-12-02 | DAM3-C-B10-A-370 | 50% | 2.5d | 2026-11-30 | 2026-12-05 | 52d | 0d | Tile Fixer [112 h]; Construction Cost [46530.7] | 46,530.71 | 23,265.35 | 05 | 03 | 10 | H1.C.A1.SA.FI.G.0640 | 1 |
| DAM3-C-B10-A-250 |  | Tiles for Office Area | 2d | 2026-12-02 | 2026-12-05 | DAM3-C-B10-A-220 |  |  |  |  | 52d | 0d | Tile Fixer [32 h]; Construction Cost [26867.3] | 26,867.31 |  | 05 | 03 | 10 |  |  |
| DAM3-C-B10-A-390 |  | Granite strip | 2d | 2026-12-05 | 2026-12-07 | DAM3-C-B10-A-558, DAM3-C-B10-A-250 |  |  |  |  | 52d | 0d | Tile Fixer [32 h]; Construction Cost [671.12] | 671.12 |  | 05 | 03 | 10 | H1.C.A1.SA.FI.G.0640 | 1 |
| DAM3-C-B10-A-420 |  | Epoxy paint | 3d | 2026-12-24 | 2026-12-28 | DAM3-C-B10-A-340, DAM3-C-B10-A-240 |  |  |  |  | 52d | 51d | Painter [112 h]; Construction Cost [115420] | 115,419.76 |  | 05 | 03 | 10 |  |  |

| ID | WBS | Activity | Duration | Start | Finish | Predecessors | Complete | Planned start | Planned finish | Total float | Free float | Resources | Cost | Actual cost | Phasing Code Category | Discipline | Project component code | Ordinal Start | Ordinal Finish | 00 Activity ID | Ordinal Duration | Zone # |
| --- | --- | --- | --- | --- | --- | --- | --- | --- | --- | --- | --- | --- | --- | --- | --- | --- | --- | --- | --- | --- | --- | --- |
|  | 3 | **DOORS & WINDOWS** |  | 2026-10-04 | 2026-11-24 |  |  |  |  |  |  |  |  |  |  |  |  |  |  |  |  |  |
| DAM3-C-B10-A-558 |  | Skylight fixtures installation | 1d | 2026-10-04 A | 2026-10-06 A | DAM3-C-B10-A-557 | 100% | 2026-12-03 | 2026-12-03 |  |  | Carperter [16 h]; Construction Cost [6489.89] | 6,489.89 | 6,489.89 | 05 | 03 | 10 |  |  |  |  |  |
| DAM3-C-B10-A-552 |  | Window (CW1) | 7d | 2026-11-10 | 2026-11-17 | DAM3-C-B10-SS-0130 |  |  |  | 52d | 0d | Carperter [112 h]; Construction Cost [94173.2] | 94,173.21 |  | 05 | 03 | 10 |  |  |  |  |  |
| DAM3-C-B10-A-553 |  | Roll up Shutter Door | 1d | 2026-11-18 | 2026-11-18 | DAM3-C-B10-A-552 |  |  |  | 52d | 0d | Carperter [16 h]; Construction Cost [68619.2] | 68,619.2 |  | 05 | 03 | 10 |  |  |  |  |  |
| DAM3-C-B10-A-200 |  | Supply and install (D5) 1000*2200mm single leaf steel door with door | 1d | 2026-11-19 | 2026-11-19 | DAM3-C-B10-A-553 |  |  |  | 52d | 0d | Carperter [16 h]; Construction Cost [16016.2] | 16,016.16 |  | 05 | 03 | 10 |  |  |  |  |  |
| DAM3-C-B10-A-554 |  | Supply and install (D4) 800*2200 mm single leaf aluminum door with door | 1d | 2026-11-21 | 2026-11-21 | DAM3-C-B10-A-200 |  |  |  | 52d | 0d | Carperter [16 h]; Construction Cost [22737.8] | 22,737.85 |  | 05 | 03 | 10 |  |  |  |  |  |
| DAM3-C-B10-A-555 |  | Supply and install (D7) 1000*2200 mm single leaf aluminum door with door | 1d | 2026-11-22 | 2026-11-22 | DAM3-C-B10-A-554 |  |  |  | 52d | 0d | Carperter [16 h]; Construction Cost [7811.07] | 7,811.07 |  | 05 | 03 | 10 |  |  |  |  |  |
| DAM3-C-B10-A-556 |  | Supply and install (D3) 1000*2200 mm single leaf aluminum door with door | 1d | 2026-11-23 | 2026-11-23 | DAM3-C-B10-A-555 |  |  |  | 52d | 0d | Carperter [16 h]; Construction Cost [16016.2] | 16,016.16 |  | 05 | 03 | 10 |  |  |  |  |  |
| DAM3-C-B10-A-557 |  | Supply and install fire rated 45 min (D2) 1200*2200 mm single leaf steel door | 1d | 2026-11-24 | 2026-11-24 | DAM3-C-B10-A-556 |  |  |  | 52d | 0d | Carperter [16 h]; Construction Cost [16711.5] | 16,711.52 |  | 05 | 03 | 10 |  |  |  |  |  |
|  | 4 | **WATER PROOFING WORKS** |  | 2026-11-25 | 2026-11-29 |  |  |  |  |  |  |  |  |  |  |  |  |  |  |  |  |  |
| DAM3-C-B10-A-370 |  | Waterproofing membrane for toilets | 4d | 2026-11-25 | 2026-11-29 | DAM3-C-B10-M-200, DAM3-C-B10-A-180, DAM3-C-B10-A-558 |  |  |  | 52d | 0d | General Labour [64 h]; Construction Cost [4879.02] | 4,879.02 |  | 05 | 03 | 10 |  |  |  |  |  |
|  | 7 | **METAL WORKS** |  | 2026-07-23 | 2026-12-16 |  |  |  |  |  |  |  |  |  |  |  |  |  |  |  |  |  |
| DAM3-C-B10-A-300 |  | Galvanised Steel Gratings | 2d | 2026-07-23 A | 2026-07-23 A | DAM3-C-B10-A-292 | 100% | 2027-02-17 | 2027-02-18 |  |  | Steel Fixer [32 h]; General Labour [32 h]; Construction Cost [6455.16] | 6,455.16 | 6,455.16 | 05 | 03 | 10 |  |  |  |  |  |
| DAM3-C-B10-A-290 |  | Steel Ladder | 2d | 2026-12-07 | 2026-12-09 | DAM3-C-B10-A-390 |  |  |  | 52d | 0d | Steel Fixer [32 h]; General Labour [32 h]; Construction Cost [9839.16] | 9,839.16 |  | 05 | 03 | 10 |  |  |  |  |  |
| DAM3-C-B10-A-291 |  | Steel railing works | 3d | 2026-12-09 | 2026-12-13 | DAM3-C-B10-A-290 |  |  |  | 52d | 0d | Steel Fixer [64 h]; General Labour [64 h]; Construction Cost [1533.98] | 1,533.98 |  | 05 | 03 | 10 |  |  |  |  |  |
| DAM3-C-B10-A-292 |  | Aluminium composite panel | 3d | 2026-12-13 | 2026-12-16 | DAM3-C-B10-A-291 |  |  |  | 52d | 0d | Steel Fixer [80 h]; General Labour [80 h]; Construction Cost [175889] | 175,888.76 |  | 05 | 03 | 10 |  |  |  |  |  |
|  | 8 | **SPECIALTIES** |  | 2026-12-16 | 2026-12-24 |  |  |  |  |  |  |  |  |  |  |  |  |  |  |  |  |  |
| DAM3-C-B10-A-320 |  | Installation of fittings | 3d | 2026-12-16 | 2026-12-20 | DAM3-C-B10-A-300, DAM3-C-B9-M-429 |  |  |  | 52d | 0d | Plumber [80 h]; Construction Cost [22981.3] | 22,981.27 |  | 05 | 03 | 10 |  |  |  |  |  |
| DAM3-C-B10-A-570 |  | Identification sign; ID01 & ID02 | 3d | 2026-12-20 | 2026-12-23 | DAM3-C-B10-A-320 |  |  |  | 52d | 0d | Mason [48 h]; Construction Cost [9630.56] | 9,630.56 |  | 05 | 03 | 10 |  |  |  |  |  |
| DAM3-C-B10-A-340 |  | Furniture Installation | 1d | 2026-12-23 | 2026-12-24 | DAM3-C-B10-A-570 |  |  |  | 52d | 0d | General Labour [16 h]; Mason [16 h]; Construction Cost [12468.8] | 12,468.83 |  | 05 | 03 | 10 |  |  |  |  |  |
|  | 3 | **MECHANICAL** |  | 2026-07-01 | 2026-12-27 |  |  |  |  |  |  |  |  |  |  |  |  |  |  |  |  |  |
|  | 1 | **HVAC** |  | 2026-12-08 | 2026-12-23 |  |  |  |  |  |  |  |  |  |  |  |  |  |  |  |  |  |
|  | 1 | **FIRST STAGE** |  | 2026-12-15 | 2026-12-19 |  |  |  |  |  |  |  |  |  |  |  |  |  |  |  |  |  |
| DAM3-C-B10-M-140 |  | Installation of HVAC Ducts | 2d | 2026-12-15 | 2026-12-16 | DAM3-C-B10-M-160 |  |  |  | 52.5d | 0d | Ductman [32 h]; Construction Cost [149489] | 149,489.33 |  | 05 | 04 | 10 | 0 | 0 | H1.C.A1.0A.MH.G.1040 | 0 | 1 |
| DAM3-C-B10-M-170 |  | Installation of Duct insulation | 2d | 2026-12-17 | 2026-12-19 | DAM3-C-B10-M-140 |  |  |  | 52.5d | 0d | Ductman [32 h]; Construction Cost [21205.4] | 21,205.4 |  | 05 | 04 | 10 |  |  |  |  |  |

| ID | WBS | Activity | Duration | Start | Finish | Predecessors | Complete | Planned start | Planned finish | Total float | Free float | Resources | Cost | Actual cost | Ordinal Start | Ordinal Finish | 00 Activity ID | Ordinal Duration | Zone # | Phasing Code Category | Discipline | Project component code |
| --- | --- | --- | --- | --- | --- | --- | --- | --- | --- | --- | --- | --- | --- | --- | --- | --- | --- | --- | --- | --- | --- | --- |
|  | 2 | **SECOND STAGE** |  | 2026-12-08 | 2026-12-23 |  |  |  |  |  |  |  |  |  |  |  |  |  |  |  |  |  |
| DAM3-C-B10-M-130 |  | Installation of Exhaust Fans | 2d | 2026-12-08 | 2026-12-09 | DAM3-C-B10-A-230 |  |  |  | 52.5d | 0d | AC Technician [32 h]; Construction Cost [7938.56] | 7,938.56 |  | 0 | 0 | H1.C.A1.0A.MH.X.4050 | 0 | 1 | 05 | 04 | 10 |
| DAM3-C-B10-M-160 |  | Installation of Wall Propeller Type Exhaust Fan | 4d | 2026-12-10 | 2026-12-14 | DAM3-C-B10-M-130 |  |  |  | 52.5d | 0d | AC Technician [64 h]; Construction Cost [46831.6] | 46,831.64 |  |  |  |  |  |  | 05 | 04 | 10 |
| DAM3-C-B10-M-339 |  | Installation of Diffuser | 2d | 2026-12-20 | 2026-12-21 | DAM3-C-B10-M-170 |  |  |  | 52.5d | 0d | Ductman [32 h]; Construction Cost [2144] | 2,144 |  | 0 | 0 | H1.C.A1.0A.MH.G.3010 | 0 | 1 | 05 | 04 | 10 |
| DAM3-C-B10-M-340 |  | Supply, install, test and commission door grilles & exhaust louvers | 2d | 2026-12-22 | 2026-12-23 | DAM3-C-B10-M-339 |  |  |  | 52.5d | 0d | Ductman [32 h]; Construction Cost [5574.4] | 5,574.4 |  | 0 | 0 | H1.C.A1.0A.MH.G.3010 | 0 | 1 | 05 | 04 | 10 |
|  | 2 | **FIRE FIGHTING SYSTEM** |  | 2026-08-23 | 2026-12-27 |  |  |  |  |  |  |  |  |  |  |  |  |  |  |  |  |  |
|  | 1 | **FIRST STAGE** |  | 2026-08-23 | 2026-08-29 |  |  |  |  |  |  |  |  |  |  |  |  |  |  |  |  |  |
| DAM3-C-B10-M-300 |  | Installation of Fire Fighting Pipes (Seamless Black Steel) | 7d | 2026-08-23 A | 2026-08-27 A | DAM3-C-B10-A-230 | 100% | 2026-12-17 | 2026-12-24 |  |  | Pipe Fitter [112 h]; Construction Cost [72394.8] | 72,394.75 | 72,394.75 | 0 | 0 | H1.C.A1.0A.MF.G.1010 | 0 | 1 | 05 | 04 | 10 |
| DAM3-C-B10-M-310 |  | Installation of Fire Fighting Valve | 3d | 2026-08-25 A | 2026-08-29 A | DAM3-C-B10-M-300 | 100% | 2026-12-22 | 2026-12-26 |  |  | Pipe Fitter [80 h]; Construction Cost [12199.4] | 12,199.4 | 12,199.4 | 0 | 0 | H1.C.A1.0A.MF.G.2010 | 0 | 1 | 05 | 04 | 10 |
|  | 2 | **SECOND STAGE** |  | 2026-12-08 | 2026-12-27 |  |  |  |  |  |  |  |  |  |  |  |  |  |  |  |  |  |
| DAM3-C-B10-M-320 |  | Installation of Fire Hose Cabinet | 3d | 2026-12-08 | 2026-12-10 | DAM3-C-B10-M-310 |  |  |  | 62.5d | 60d | Pipe Fitter [48 h]; Construction Cost [15158.6] | 15,158.56 |  | 0 | 0 | H1.C.A1.0A.MF.G.3010 | 0 | 1 | 05 | 04 | 10 |
| DAM3-C-B10-M-370 |  | Supply, install, test and commission Fire Department Connection(FDC) | 3d | 2026-12-24 | 2026-12-27 | DAM3-C-B10-M-340 |  |  |  | 52.5d | 51.5d | Pipe Fitter [48 h]; Construction Cost [2706.06] | 2,706.06 |  | 0 | 0 | H1.C.A1.0A.MF.G.3010 | 0 | 1 | 05 | 04 | 10 |
|  | 3 | **SEWER AND DRAINAGE SYSTEM** |  | 2026-07-01 | 2026-12-21 |  |  |  |  |  |  |  |  |  |  |  |  |  |  |  |  |  |
|  | 1 | **FIRST STAGE** |  | 2026-07-01 | 2026-12-05 |  |  |  |  |  |  |  |  |  |  |  |  |  |  |  |  |  |
| DAM3-C-B10-M-200 |  | Installation of Sanitary Waste / Drainage Pipes | 4d | 2026-07-01 A | 2026-07-06 A | DAM3-C-B10-S-347 | 100% | 2026-07-16 | 2026-07-20 |  |  | Plumber [64 h]; Construction Cost [18585.1] | 18,585.14 | 18,585.14 | 0 | 0 | H1.C.K1.00.MP.G.1020 | 0 | 1 | 05 | 04 | 10 |
| DAM3-C-B10-M-380 |  | Installation of Trench drain | 5d | 2026-07-07 A | 2026-07-09 A | DAM3-C-B10-M-220 | 100% | 2027-01-24 | 2027-01-30 |  |  | Plumber [80 h]; Construction Cost [11508.8] | 11,508.8 | 11,508.8 |  |  |  |  |  | 05 | 04 | 10 |
| DAM3-C-B10-M-220 |  | Installation of Floor Drain | 2d | 2026-12-02 | 2026-12-05 | DAM3-C-B10-M-200, DAM3-C-B10-A-220 |  |  |  | 58d | 0d | Plumber [32 h]; Construction Cost [11056] | 11,055.96 |  |  |  |  |  | 1 | 05 | 04 | 10 |
|  | 2 | **SECOND STAGE** |  | 2026-12-05 | 2026-12-21 |  |  |  |  |  |  |  |  |  |  |  |  |  |  |  |  |  |
| DAM3-C-B10-M-180 |  | Installation of Electric Water Heater | 2d | 2026-12-05 | 2026-12-07 | DAM3-C-B10-M-380 |  |  |  | 58d | 0d | Plumber [32 h]; Construction Cost [1819.51] | 1,819.51 |  | 0 | 0 | H1.C.K1.00.MP.G.1030 | 0 | 1 | 05 | 04 | 10 |
| DAM3-C-B10-M-190 |  | Installation of Sanitary Fixture and Accessories | 4d | 2026-12-07 | 2026-12-12 | DAM3-C-B10-M-180 |  |  |  | 58d | 0d | Plumber [64 h]; Construction Cost [19921.7] | 19,921.72 |  | 0 | 0 | H1.C.K1.00.MP.G.2040 | 0 | 1 | 05 | 04 | 10 |
| DAM3-C-B10-M-210 |  | Installation of Lavotary /Wash Basin | 2d | 2026-12-12 | 2026-12-14 | DAM3-C-B10-M-180, DAM3-C-B10-M-190 |  |  |  | 58d | 0d | Plumber [32 h]; Construction Cost [21416.7] | 21,416.68 |  |  |  |  |  | 1 | 05 | 04 | 10 |
| DAM3-C-B10-M-270 |  | Installation of Bib Tap | 2d | 2026-12-14 | 2026-12-16 | DAM3-C-B10-M-190, DAM3-C-B10-M-210 |  |  |  | 58d | 0d | Plumber [32 h]; Construction Cost [1900.66] | 1,900.66 |  |  |  |  |  |  | 05 | 04 | 10 |
| DAM3-C-B10-M-428 |  | Installation of Water Tap | 2d | 2026-12-16 | 2026-12-19 | DAM3-C-B10-M-210, DAM3-C-B10-M-270 |  |  |  | 58d | 0d | Plumber [32 h]; Construction Cost [2874.14] | 2,874.14 |  |  |  |  |  |  | 05 | 04 | 10 |
| DAM3-C-B10-M-429 |  | Installation of Roof Vent Cap | 2d | 2026-12-19 | 2026-12-21 | DAM3-C-B10-M-428 |  |  |  | 58d | 57d | Pipe Fitter [32 h]; Construction Cost [927.12] | 927.12 |  |  |  |  |  |  | 05 | 04 | 10 |

| ID | WBS | Activity | Duration | Start | Finish | Predecessors | Complete | Remaining | Planned start | Planned finish | Total float | Free float | Resources | Cost | Actual cost | Ordinal Start | Ordinal Finish | 00 Activity ID | Ordinal Duration | Zone # | Phasing Code Category | Discipline | Project component code |
| --- | --- | --- | --- | --- | --- | --- | --- | --- | --- | --- | --- | --- | --- | --- | --- | --- | --- | --- | --- | --- | --- | --- | --- |
|  | 4 | **WATER SUPPLY SYSTEM** |  | 2026-09-17 | 2026-12-13 |  |  |  |  |  |  |  |  |  |  |  |  |  |  |  |  |  |  |
|  | 1 | **FIRST STAGE** |  | 2026-09-17 | 2026-09-21 |  |  |  |  |  |  |  |  |  |  |  |  |  |  |  |  |  |  |
| DAM3-C-B10-M-280 |  | Installation of Water Supply Valve | 2d | 2026-09-17 A | 2026-09-21 A | DAM3-C-B10-M-290 | 100% |  | 2026-12-22 | 2026-12-24 |  |  | Plumber [32 h]; Construction Cost [18274.3] | 18,274.27 | 18,274.27 | 0 | 0 | H1.C.K1.00.MP.G.2010 | 0 | 1 | 05 | 04 | 10 |
| DAM3-C-B10-M-290 |  | Installation of Water Supply Pipes | 4d | 2026-09-17 A | 2026-09-21 A | DAM3-C-B10-A-230 | 100% |  | 2026-12-17 | 2026-12-22 |  |  | Plumber [64 h]; Construction Cost [23318.4] | 23,318.41 | 23,318.41 | 0 | 0 | H1.C.K1.00.MP.G.1010 | 0 | 1 | 05 | 04 | 10 |
|  | 2 | **SECOND STAGE** |  | 2026-12-08 | 2026-12-13 |  |  |  |  |  |  |  |  |  |  |  |  |  |  |  |  |  |  |
| DAM3-C-B10-M-330 |  | Capped connection | 5d | 2026-12-08 | 2026-12-13 | DAM3-C-B10-M-280 |  |  |  |  | 64.5d | 63.5d | Plumber [80 h]; Construction Cost [278.13] | 278.13 |  |  |  |  |  |  | 05 | 04 | 10 |
|  | 4 | **ELECTRICAL** |  | 2026-06-02 | 2027-02-11 |  |  |  |  |  |  |  |  |  |  |  |  |  |  |  |  |  |  |
|  | 1 | **FIRST STAGE** |  | 2026-06-02 | 2026-12-06 |  |  |  |  |  |  |  |  |  |  |  |  |  |  |  |  |  |  |
| DAM3-C-B10-E-113 |  | Installation of Earthing and Grounding | 5d | 2026-06-02 A | 2026-12-06 | DAM3-C-B10-E-223 | 90% | 0.5d | 2027-02-23 | 2027-02-28 | 68.3d | 55.5d | Electrician [80 h]; Construction Cost [19646.5] | 19,646.47 | 17,681.82 |  |  | H1.C.K1.00.EM.G.2040 |  | 1 | 05 | 05 | 10 |
| DAM3-C-B10-E-143 |  | Installation of Conduits and wiring outlets - Fire Alarm System | 4d | 2026-06-03 A | 2026-11-07 | DAM3-C-B10-A-170 | 50% | 2d | 2027-01-23 | 2027-01-26 | 54.1d | 0d | Electrician [64 h]; Construction Cost [1768.31] | 1,768.31 | 884.15 |  |  | H1.C.K1.00.EL.G.1020 |  | 1 | 05 | 05 | 10 |
| DAM3-C-B10-E-183 |  | Installation of Sleeves & Power outlet | 4d | 2026-06-03 A | 2026-11-07 | DAM3-C-B10-A-170 | 50% | 2d | 2027-01-19 | 2027-01-23 | 67d | 5d | Electrician [128 h]; Construction Cost [2920.45] | 2,920.45 | 1,460.23 |  |  |  |  | 1 | 05 | 05 | 10 |
| DAM3-C-B10-E-163 |  | Installation of Conduites for Lighting Fixture | 4d | 2026-09-21 A | 2026-11-17 | DAM3-C-B10-E-133 | 90% | 0.4d | 2026-11-29 | 2026-12-02 | 54.1d | 0d | Electrician [64 h]; Construction Cost [8462.97] | 8,462.97 | 7,616.67 |  |  | H1.C.K1.00.EM.G.2030 |  | 1 | 05 | 05 | 10 |
| DAM3-C-B10-E-233 |  | Installation of Wires | 4d | 2026-11-17 | 2026-11-22 | DAM3-C-B10-E-163 |  |  |  |  | 54.1d | 0d | Electrician [64 h]; Construction Cost [16925.9] | 16,925.94 |  |  |  |  |  |  | 05 | 05 | 10 |
| DAM3-C-B10-E-223 |  | Installation of LV Cables | 4d | 2026-12-01 | 2026-12-06 | DAM3-C-B10-E-213 |  |  |  |  | 68.3d | 0d | Electrician [64 h]; Construction Cost [36390] | 36,389.98 |  |  |  |  |  |  | 05 | 05 | 10 |
|  | 2 | **SECOND STAGE** |  | 2026-11-08 | 2027-02-11 |  |  |  |  |  |  |  |  |  |  |  |  |  |  |  |  |  |  |
| DAM3-C-B10-E-123 |  | Installation of Fire Alarm Control Panel | 4d | 2026-11-08 | 2026-11-11 | DAM3-C-B10-E-143 |  |  |  |  | 54.1d | 0d | Electrician [64 h]; Construction Cost [19451.4] | 19,451.37 |  |  |  | H1.C.K1.00.EL.X.4120 |  | 1 | 05 | 05 | 10 |
| DAM3-C-B10-E-133 |  | Installation of Fire Detectors & Accessories | 4d | 2026-11-12 | 2026-11-16 | DAM3-C-B10-E-123 |  |  |  |  | 54.1d | 0d | Electrician [64 h]; Construction Cost [56740.4] | 56,740.37 |  |  |  | H1.C.K1.00.EL.G.3020 |  | 1 | 05 | 05 | 10 |
| DAM3-C-B10-E-153 |  | Installation of Lighting fixtures | 4d | 2026-11-22 | 2026-11-26 | DAM3-C-B10-E-233 |  |  |  |  | 54.1d | 41.1d | Electrician [64 h]; Construction Cost [76166.7] | 76,166.74 |  |  |  | H1.C.K1.00.EM.G.3010 |  | 1 | 05 | 05 | 10 |
| DAM3-C-B10-E-193 |  | Installation of Main Distribution Board | 2d | 2026-11-22 | 2026-11-24 | DAM3-C-B10-E-233 |  |  |  |  | 68.3d | 0d | Electrician [32 h]; Construction Cost [32472.7] | 32,472.73 |  |  |  | H1.C.K1.00.EM.G.2020 |  | 1 | 05 | 05 | 10 |
| DAM3-C-B10-E-410 |  | Installation of CCTV System | 7d | 2026-11-22 | 2026-11-30 | DAM3-C-B10-E-233 |  |  |  |  | 64.8d | 0d | Plumber [112 h]; Construction Cost [76349.2] | 76,349.24 |  |  |  |  |  |  | 05 | 05 | 10 |
| DAM3-C-B10-E-243 |  | Installation of LP-1 Panel | 2d | 2026-11-24 | 2026-11-26 | DAM3-C-B10-E-193 |  |  |  |  | 68.3d | 0d | Electrician [32 h]; Construction Cost [18403.5] | 18,403.54 |  |  |  | H1.C.K1.00.EM.G.2020 |  | 1 | 05 | 05 | 10 |
| DAM3-C-B10-E-253 |  | Installation of PP-AC panel | 2d | 2026-11-26 | 2026-11-29 | DAM3-C-B10-E-243 |  |  |  |  | 68.3d | 0d | Electrician [32 h]; Construction Cost [21648.5] | 21,648.48 |  |  |  | H1.C.K1.00.EM.G.2020 |  | 1 | 05 | 05 | 10 |
| DAM3-C-B10-E-213 |  | Installation of Telephone Cabinet | 2d | 2026-11-29 | 2026-12-01 | DAM3-C-B10-E-253 |  |  |  |  | 68.3d | 0d | Electrician [32 h]; Construction Cost [26991.1] | 26,991.08 |  |  |  |  |  | 1 | 05 | 05 | 10 |
| DAM3-C-B10-E-273 |  | Installation of Access Control System | 5d | 2026-11-30 | 2026-12-06 | DAM3-C-B10-E-410 |  |  |  |  | 64.8d | 0d | Electrician [80 h]; Construction Cost [27616.9] | 27,616.86 |  |  |  | H1.C.K1.00.EM.G.2040 |  | 1 | 05 | 05 | 10 |
| DAM3-C-B10-E-283 |  | Monitor Modules for Fire Alarm | 2d | 2026-12-06 | 2026-12-08 | DAM3-C-B10-E-273 |  |  |  |  | 64.8d | 0d | Electrician [32 h]; Construction Cost [3882.38] | 3,882.38 |  |  |  | H1.C.K1.00.EM.G.2040 |  | 1 | 05 | 05 | 10 |
| DAM3-C-B10-E-173 |  | Installation of Wiring Devices | 4d | 2026-12-08 | 2026-12-12 | DAM3-C-B10-E-183, DAM3-C-B10-A-230 |  |  |  |  | 55.5d | 0d | Electrician [64 h]; Construction Cost [19435.1] | 19,435.09 |  |  |  | H1.C.K1.00.EM.G.3020 |  | 1 | 05 | 05 | 10 |
| DAM3-C-B10-E-293 |  | Line Isolator Modules for Fire Alarm | 2d | 2026-12-08 | 2026-12-10 | DAM3-C-B10-E-283 |  |  |  |  | 64.8d | 0d | Electrician [32 h]; Construction Cost [185.4] | 185.4 |  |  |  | H1.C.K1.00.EM.G.2040 |  | 1 | 05 | 05 | 10 |
| DAM3-C-B10-E-303 |  | Firewarning flash light with sounder; wall mounted, Weather proof | 2d | 2026-12-10 | 2026-12-13 | DAM3-C-B10-E-293 |  |  |  |  | 64.8d | 57.6d | Electrician [32 h]; Construction Cost [3082.69] | 3,082.69 |  |  |  | H1.C.K1.00.EM.G.2040 |  | 1 | 05 | 05 | 10 |
| DAM3-C-B10-E-203 |  | Installation of Disconnect Switches | 2d | 2026-12-13 | 2026-12-14 | DAM3-C-B10-E-173 |  |  |  |  | 55.5d | 44d | Electrician [32 h]; Construction Cost [30236] | 30,235.95 |  |  |  |  |  |  | 05 | 05 | 10 |
| DAM3-C-B10-E-420 |  | Installation of Solar power plant | 5d | 2027-02-06 | 2027-02-11 | DAM3-C-B9-E-420 |  |  |  |  | 7d | 0d | Plumber [112 h]; Construction Cost [253269] | 253,268.71 |  |  |  |  |  |  | 05 | 05 | 10 |

| ID | WBS | Activity | Duration | Start | Finish | Predecessors | Complete | Planned start | Planned finish | Resources | Cost | Actual cost | 00 Activity ID | AMH Tender Act. ID | Tender Original Duration | Zone # | Phasing Code Category | Discipline | Project component code |
| --- | --- | --- | --- | --- | --- | --- | --- | --- | --- | --- | --- | --- | --- | --- | --- | --- | --- | --- | --- |
|  | 12 | **BLOCK B11** |  | 2026-02-18 | 2027-02-16 |  |  |  |  |  |  |  |  |  |  |  |  |  |  |
|  | 1 | **STRUCTURAL** |  | 2026-02-18 | 2026-11-12 |  |  |  |  |  |  |  |  |  |  |  |  |  |  |
|  | 1 | **FOOTING** |  | 2026-02-18 | 2026-05-02 |  |  |  |  |  |  |  |  |  |  |  |  |  |  |
| DAM3-C-B11-S-150 |  | Excavation for footings | 4d | 2026-02-18 A | 2026-03-08 A | DAM3-C-B10-S-150 | 100% | 2026-04-06 | 2026-04-11 | General Labour [112 h]; Equipment Operator [112 h]; Truck [64 h]; Excavator [64 h]; Mini Roller Compactor [64 h]; Construction Cost [89859.6] | 89,859.61 | 89,859.61 | H1.C.K1.00.SW.F.1010 | PH1-MHR-ST-640 | 12 | 1 | 05 | 01 | 11 |
| DAM3-C-B11-S-6343 |  | Soil replacement - rock fill | 4d | 2026-03-08 A | 2026-03-16 A | DAM3-C-B11-S-150 | 100% | 2026-03-25 | 2026-03-29 | General Labour [256 h]; Truck [64 h]; Mini Roller Compactor [64 h]; Equipment Operator [256 h]; Wheel Loader [64 h]; Construction Cost [179062] | 179,061.91 | 179,061.91 | H1.C.K1.00.SW.F.1060 | PH1-MHR-ST-645 | 15 | 1 | 05 | 01 | 11 |
| DAM3-C-B11-S-6353 |  | Engineering fill | 4d | 2026-03-26 A | 2026-03-31 A | DAM3-C-B11-S-6343, DAM3-C-B11-S-6343 FF | 100% | 2026-04-02 | 2026-04-06 | General Labour [256 h]; Truck [64 h]; Mini Roller Compactor [64 h]; Equipment Operator [256 h]; Wheel Loader [64 h]; Construction Cost [46046.2] | 46,046.19 | 46,046.19 | H1.C.K1.00.SW.F.1060 | PH1-MHR-ST-645 | 15 | 1 | 05 | 01 | 11 |
| DAM3-C-B11-S-101 |  | Anti Termite Below Footings | 1d | 2026-04-02 A | 2026-04-02 A | DAM3-C-B11-S-6353 | 100% | 2026-04-12 | 2026-04-12 | Mason [16 h]; Construction Cost [11905.5] | 11,905.55 | 11,905.55 | H1.C.K1.00.SW.F.1030 | PH1-MHR-ST-1020 | 10 | 1 | 05 | 01 | 11 |
| DAM3-C-B11-S-102 |  | Vapour Barrier for Footings | 1d | 2026-04-02 A | 2026-04-02 A | DAM3-C-B11-S-101 | 100% | 2026-04-13 | 2026-04-13 | General Labour [16 h]; Construction Cost [7940.1] | 7,940.1 | 7,940.1 | H1.C.K1.00.SW.F.1040 | PH1-MHR-ST-1080 | 15 | 1 | 05 | 01 | 11 |
| DAM3-C-B11-S-103 |  | Lean Concrete Below Footings | 2d | 2026-04-02 A | 2026-04-02 A | DAM3-C-B11-S-102 | 100% | 2026-04-14 | 2026-04-15 | Mason [32 h]; Construction Cost [8229.34] | 8,229.34 | 8,229.34 | H1.C.K1.00.SW.F.1030 | PH1-MHR-ST-1020 | 10 | 1 | 05 | 01 | 11 |
| DAM3-C-B11-S-104 |  | Rebar for Footings | 4d | 2026-04-25 A | 2026-04-28 A | DAM3-C-B11-S-103 | 100% | 2026-04-29 | 2026-05-03 | Steel Fixer [64 h]; Construction Cost [101845] | 101,844.98 | 101,844.98 |  |  |  | 1 | 05 | 01 | 11 |
| DAM3-C-B11-S-105 |  | Formwork for Footings | 4d | 2026-04-28 A | 2026-04-29 A | DAM3-C-B11-S-104 | 100% | 2026-05-02 | 2026-05-05 | Carperter [64 h]; Construction Cost [25461.2] | 25,461.25 | 25,461.25 |  |  |  | 1 | 05 | 01 | 11 |
| DAM3-C-B11-S-106 |  | Pouring Concrete for Footings | 1d | 2026-05-02 A | 2026-05-02 A | DAM3-C-B11-S-105 | 100% | 2026-05-04 | 2026-05-04 | Carperter [16 h]; Mason [16 h]; Steel Fixer [16 h]; Concrete Mixer [8 h]; Equipment Operator [16 h]; Construction Cost [127306] | 127,306.23 | 127,306.23 | H1.C.K1.00.RC.F.1010 | PH1-MHR-ST-1030 | 21 | 1 | 05 | 01 | 11 |
|  | 2 | **COLUMN NECK** |  | 2026-04-27 | 2026-05-20 |  |  |  |  |  |  |  |  |  |  |  |  |  |  |
| DAM3-C-B11-S-257 |  | Rebar for column neck | 4d | 2026-04-27 A | 2026-04-28 A | DAM3-C-B11-S-106 | 100% | 2026-05-05 | 2026-05-09 | Steel Fixer [64 h]; Construction Cost [14919.2] | 14,919.19 | 14,919.19 |  |  |  | 1 | 05 | 01 | 11 |
| DAM3-C-B11-S-267 |  | Formwork for column neck | 2d | 2026-05-05 A | 2026-05-06 A | DAM3-C-B11-S-257 | 100% | 2026-05-10 | 2026-05-11 | Carperter [32 h]; Construction Cost [9946.13] | 9,946.13 | 9,946.13 |  |  |  | 1 | 05 | 01 | 11 |
| DAM3-C-B11-S-297 |  | Pouring Concrete for column neck | 1d | 2026-05-07 A | 2026-05-07 A | DAM3-C-B11-S-267 | 100% | 2026-05-12 | 2026-05-12 | Mason [16 h]; Carperter [16 h]; Concrete Mixer [8 h]; Steel Fixer [16 h]; Equipment Operator [16 h]; Construction Cost [24865.3] | 24,865.31 | 24,865.31 | H1.C.K1.00.RC.F.1110 | PH1-MHR-ST-1030 | 21 | 1 | 05 | 01 | 11 |
| DAM3-C-B11-S-307 |  | Damp proof /Bitumin paint on Footings & column neck | 2d | 2026-05-11 A | 2026-05-13 A | DAM3-C-B11-S-297 | 100% | 2026-05-16 | 2026-05-17 | Painter [32 h]; Construction Cost [24777.7] | 24,777.73 | 24,777.73 | H1.C.K1.00.SW.F.1050 | PH1-MHR-ST-1080 | 15 | 1 | 05 | 01 | 11 |
| DAM3-C-B11-S-367 |  | Backfilling / Compaction up to Bottom of Grade Beams | 7d | 2026-05-17 A | 2026-05-20 A | DAM3-C-B11-S-307 | 100% | 2026-05-19 | 2026-05-30 | General Labour [256 h]; Truck [128 h]; Mini Roller Compactor [128 h]; Equipment Operator [256 h]; Wheel Loader [128 h]; Construction Cost [46046.2] | 46,046.19 | 46,046.19 | H1.C.K1.00.SW.F.1060 | PH1-MHR-ST-645 | 15 | 1 | 05 | 01 | 11 |
|  | 3 | **GRADE BEAM** |  | 2026-05-24 | 2026-06-13 |  |  |  |  |  |  |  |  |  |  |  |  |  |  |
| DAM3-C-B11-S-337 |  | Vapour barrier for Grade Beams | 2d | 2026-05-24 A | 2026-05-24 A | DAM3-C-B11-S-527 | 100% | 2026-05-31 | 2026-06-01 | General Labour [32 h]; Construction Cost [5293.4] | 5,293.4 | 5,293.4 | H1.C.K1.00.SW.F.1040 | PH1-MHR-ST-1080 | 15 | 1 | 05 | 01 | 11 |
| DAM3-C-B11-S-338 |  | Lean Concrete Below Grade Beams | 2d | 2026-05-24 A | 2026-05-24 A | DAM3-C-B11-S-337 | 100% | 2026-06-02 | 2026-06-03 | Mason [32 h]; Construction Cost [4431.19] | 4,431.19 | 4,431.19 | H1.C.K1.00.SW.F.1130 | PH1-MHR-ST-1020 | 10 | 1 | 05 | 01 | 11 |
| DAM3-C-B11-S-527 |  | Anti Termite Below Grade Beams | 1d | 2026-05-24 A | 2026-05-24 A | DAM3-C-B11-S-367 | 100% | 2026-05-30 | 2026-05-30 | Mason [16 h]; Construction Cost [11905.5] | 11,905.55 | 11,905.55 | H1.C.K1.00.SW.F.1030 | PH1-MHR-ST-1020 | 10 | 1 | 05 | 01 | 11 |
| DAM3-C-B11-S-339 |  | Rebar for Grade Beams | 5d | 2026-06-01 A | 2026-06-03 A | DAM3-C-B11-S-338 | 100% | 2026-06-03 | 2026-06-08 | Steel Fixer [80 h]; Construction Cost [27194.5] | 27,194.46 | 27,194.46 |  |  |  | 1 | 05 | 01 | 11 |
| DAM3-C-B11-S-340 |  | Formwork for Grade Beams | 2d | 2026-06-02 A | 2026-06-06 A | DAM3-C-B11-S-339 | 100% | 2026-06-08 | 2026-06-10 | Carperter [32 h]; Construction Cost [6798.61] | 6,798.61 | 6,798.61 |  |  |  | 1 | 05 | 01 | 11 |
| DAM3-C-B11-S-341 |  | Anchor bolts installation | 2d | 2026-06-02 A | 2026-06-03 A | DAM3-C-B11-S-340 SS | 100% | 2026-06-07 | 2026-06-09 | Carperter [32 h]; Construction Cost [57238.8] | 57,238.83 | 57,238.83 |  |  |  | 1 | 05 | 01 | 11 |
| DAM3-C-B11-S-342 |  | Pouring Concrete for Grade Beams | 1d | 2026-06-06 A | 2026-06-06 A | DAM3-C-B11-S-340, DAM3-C-B11-S-341 | 100% | 2026-06-08 | 2026-06-09 | Mason [16 h]; Carperter [16 h]; Concrete Mixer [8 h]; Steel Fixer [16 h]; Equipment Operator [16 h]; Construction Cost [33993.1] | 33,993.09 | 33,993.09 | H1.C.K1.00.RC.F.1110 | PH1-MHR-ST-1030 | 21 | 1 | 05 | 01 | 11 |
| DAM3-C-B11-S-347 |  | Damp proof /Bitumin paint on Grade Beams | 5d | 2026-06-11 A | 2026-06-13 A | DAM3-C-B11-S-342 | 100% | 2026-06-14 | 2026-06-18 | Painter [80 h]; Construction Cost [24777.7] | 24,777.73 | 24,777.73 | H1.C.K1.00.SW.F.1050 | PH1-MHR-ST-1080 | 15 | 1 | 05 | 01 | 11 |

| ID | WBS | Activity | Duration | Start | Finish | Predecessors | Complete | Planned start | Planned finish | Total float | Free float | Resources | Cost | Actual cost | Zone # | Phasing Code Category | Discipline | Project component code | 00 Activity ID | AMH Tender Act. ID | Tender Original Duration | project summary-4 | PS (su & rbf)-4 | New code for weekly report-4 | New discipline code-4 |
| --- | --- | --- | --- | --- | --- | --- | --- | --- | --- | --- | --- | --- | --- | --- | --- | --- | --- | --- | --- | --- | --- | --- | --- | --- | --- |
|  | 5 | **SLAB ON GRADE** |  | 2026-06-15 | 2026-11-12 |  |  |  |  |  |  |  |  |  |  |  |  |  |  |  |  |  |  |  |  |
| DAM3-C-B11-S-377 |  | Backfilling / Compaction for Slab on Grade | 7d | 2026-06-15 A | 2026-06-21 A | DAM3-C-B11-S-347 | 100% | 2026-06-16 | 2026-06-23 |  |  | Mini Roller Compactor [128 h]; General Labour [256 h]; Equipment Operator [256 h]; Wheel Loader [128 h]; Truck [128 h]; Construction Cost [23023.1] | 23,023.09 | 23,023.09 | 1 | 05 | 01 | 11 |  |  |  |  |  |  |  |
| DAM3-C-B11-S-378 |  | Anti Termite Treatment below Ground Slab | 1d | 2026-07-26 A | 2026-07-28 A | DAM3-C-B11-S-377 | 100% | 2026-07-27 | 2026-07-27 |  |  | General Labour [16 h]; Construction Cost [15874.1] | 15,874.08 | 15,874.08 | 1 | 05 | 01 | 11 | H1.C.A1.06.SW.F.1220 | PH1-MHR-ST-645 | 15 |  |  |  |  |
| DAM3-C-B11-S-379 |  | Vapour barrier for below Ground Slab | 2d | 2026-07-26 A | 2026-07-28 A | DAM3-C-B11-S-378 | 100% | 2026-07-28 | 2026-07-29 |  |  | General Labour [32 h]; Construction Cost [13233.5] | 13,233.49 | 13,233.49 | 1 | 05 | 01 | 11 |  |  |  |  |  |  |  |
| DAM3-C-B11-S-382 |  | Pouring Concrete for Ground Slab | 4d | 2026-07-26 A | 2026-07-28 A | DAM3-C-B11-S-379 | 100% | 2026-07-30 | 2026-08-03 |  |  | Mason [64 h]; Carperter [64 h]; Steel Fixer [64 h]; Concrete Mixer [32 h]; Equipment Operator [64 h]; Construction Cost [344195] | 344,195.21 | 344,195.21 | 1 | 05 | 01 | 11 | H1.C.A1.06.RC.G.1210 | PH1-MHR-ST-496 | 24 |  |  |  |  |
| DAM3-C-B11-S-517 |  | Concrete pad | 7d | 2026-11-05 | 2026-11-12 | DAM3-C-B11-A-0150 |  |  |  | 54.5d | 5d | Mason [112 h]; Construction Cost [907.11] | 907.11 |  |  | 05 | 01 | 11 |  |  |  |  |  |  |  |
|  | 4 | **COLUMNS & BEAMS** |  | 2026-06-02 | 2026-10-01 |  |  |  |  |  |  |  |  |  |  |  |  |  |  |  |  |  |  |  |  |
| DAM3-C-B11-S-6101 |  | Rebar for Tie Beams | 4d | 2026-06-02 A | 2026-06-08 A | DAM3-C-B11-S-5103 | 100% | 2026-07-05 | 2026-07-08 |  |  | Steel Fixer [64 h]; Construction Cost [7263.64] | 7,263.64 | 7,263.64 | 1 | 05 | 01 | 11 |  |  |  | 3 | 1 | 4 | 1 |
| DAM3-C-B11-S-6102 |  | Formwork for Tie Beams | 2d | 2026-06-03 A | 2026-06-08 A | DAM3-C-B11-S-6101 | 100% | 2026-07-09 | 2026-07-11 |  |  | Carperter [32 h]; Construction Cost [1815.91] | 1,815.91 | 1,815.91 | 1 | 05 | 01 | 11 |  |  |  | 3 | 1 | 4 | 1 |
| DAM3-C-B11-S-6103 |  | Pouring Concrete for Tie Beams | 1d | 2026-06-06 A | 2026-06-09 A | DAM3-C-B11-S-6102 | 100% | 2026-07-12 | 2026-07-12 |  |  | Mason [16 h]; Carperter [16 h]; Concrete Mixer [32 h]; Steel Fixer [16 h]; Equipment Operator [16 h]; Construction Cost [9079.54] | 9,079.54 | 9,079.54 | 1 | 05 | 01 | 11 | H1.C.K1.00.RC.F.1110 | PH1-MHR-ST-1030 | 21 | 3 | 1 | 4 | 1 |
| DAM3-C-B11-S-5101 |  | Rebar for column | 5d | 2026-07-13 A | 2026-07-16 A | DAM3-C-B11-S-377 | 100% | 2026-07-14 | 2026-07-19 |  |  | Steel Fixer [112 h]; Construction Cost [20144] | 20,144.05 | 20,144.05 | 1 | 05 | 01 | 11 |  |  |  | 3 | 1 | 4 | 1 |
| DAM3-C-B11-S-5102 |  | Formwork for column | 4d | 2026-08-08 A | 2026-08-11 A | DAM3-C-B11-S-5101 | 100% |  |  |  |  | Carperter [64 h]; Construction Cost [5036.01] | 5,036.01 | 5,036.01 | 1 | 05 | 01 | 11 |  |  |  | 3 | 1 | 4 | 1 |
| DAM3-C-B11-S-5103 |  | Pouring Concrete for column | 1d | 2026-08-09 A | 2026-08-12 A | DAM3-C-B11-S-5102, DAM3-C-B11-S-382 | 100% | 2026-08-12 | 2026-08-12 |  |  | Mason [16 h]; Carperter [16 h]; Concrete Mixer [32 h]; Steel Fixer [16 h]; Equipment Operator [16 h]; Construction Cost [25180.1] | 25,180.06 | 25,180.06 | 1 | 05 | 01 | 11 | H1.C.K1.00.RC.F.1110 | PH1-MHR-ST-1030 | 21 | 3 | 1 | 4 | 1 |
| DAM3-C-B11-S-6113 |  | Rebar for Beams | 4d | 2026-09-01 A | 2026-09-03 A | DAM3-C-B11-S-6103 | 100% | 2026-09-02 | 2026-09-06 |  |  | Steel Fixer [64 h]; Construction Cost [13379.1] | 13,379.11 | 13,379.11 | 1 | 05 | 01 | 11 |  |  |  | 3 | 1 | 4 | 1 |
| DAM3-C-B11-S-6123 |  | Formwork for Beams | 2d | 2026-09-21 A | 2026-09-26 A | DAM3-C-B11-S-6113, DAM3-C-B11-S-6113 FF | 100% | 2026-09-24 | 2026-09-26 |  |  | Carperter [32 h]; Construction Cost [3344.77] | 3,344.77 | 3,344.77 | 1 | 05 | 01 | 11 |  |  |  | 3 | 1 | 4 | 1 |
| DAM3-C-B11-S-6133 |  | Pouring Concrete for Beams | 1d | 2026-09-28 A | 2026-10-01 A | DAM3-C-B11-S-6123, DAM3-C-B11-S-6123 FF | 100% | 2026-10-07 | 2026-10-07 |  |  | Mason [16 h]; Carperter [16 h]; Concrete Mixer [32 h]; Steel Fixer [16 h]; Equipment Operator [16 h]; Construction Cost [16723.9] | 16,723.88 | 16,723.88 | 1 | 05 | 01 | 11 | H1.C.K1.00.RC.F.1110 | PH1-MHR-ST-1030 | 21 | 3 | 1 | 4 | 1 |
|  | 5 | **STRUCTURAL STEEL** |  | 2026-06-25 | 2026-11-18 |  |  |  |  |  |  |  |  |  |  |  |  |  |  |  |  |  |  |  |  |
| DAM3-C-B11-SS-0100 |  | Installation of columns | 3d | 2026-06-25 A | 2026-06-28 A | DAM3-C-B11-S-382, DAM3-C-B10-SS-0110 SS | 100% | 2026-11-17 | 2026-11-19 |  |  | Structural Steel Fixer [80 h]; General Labour [80 h]; Equipment Operator [80 h]; Mobile Crane [24 h]; Construction Cost [217508] | 217,507.55 | 217,507.55 |  | 05 | 02 | 11 |  |  |  |  |  |  |  |
| DAM3-C-B11-SS-0110 |  | Installation of raft and purlins | 5d | 2026-06-30 A | 2026-07-01 A | DAM3-C-B11-SS-0100 | 100% | 2026-11-19 | 2026-11-24 |  |  | Structural Steel Fixer [160 h]; General Labour [160 h]; Mobile Crane [56 h]; Equipment Operator [160 h]; Construction Cost [326261] | 326,261.32 | 326,261.32 |  | 05 | 02 | 11 |  |  |  |  |  |  |  |
| DAM3-C-B11-SS-610 |  | Intumescent paint to steel works | 7d | 2026-07-19 A | 2026-07-25 A | DAM3-C-B11-SS-0110, DAM3-P-DL-A-1790 | 100% | 2026-12-01 | 2026-12-09 |  |  | Painter [112 h]; Construction Cost [317760] | 317,759.56 | 317,759.56 | 1 | 05 | 02 | 11 | H1.C.A1.SA.FI.G.0730 |  |  |  |  |  |  |
| DAM3-C-B11-SS-0140 |  | Installation of roof sheet | 5d | 2026-08-01 A | 2026-08-08 A | DAM3-C-B11-A-0120, DAM3-C-B11-SS-610, DAM3-C-B11-S-6133 | 100% | 2026-12-22 | 2026-12-27 |  |  | Roof sheet worker [160 h]; General Labour [160 h]; Mobile Crane [40 h]; Equipment Operator [160 h]; Construction Cost [217508] | 217,507.55 | 217,507.55 |  | 05 | 02 | 11 |  |  |  |  |  |  |  |
| DAM3-C-B11-SS-0130 |  | Installation of wall sandwich panel | 5d | 2026-09-03 A | 2026-09-30 A | DAM3-C-B11-A-0150 | 100% | 2026-11-07 | 2026-11-12 |  |  | Sandwich panel worker [112 h]; General Labour [112 h]; Mobile Crane [40 h]; Equipment Operator [112 h]; Construction Cost [326261] | 326,261.32 | 326,261.32 |  | 05 | 02 | 11 |  |  |  |  |  |  |  |
| DAM3-C-B11-SS-620 |  | Steel members for office area | 7d | 2026-09-27 A | 2026-09-30 A | DAM3-C-B11-SS-610, DAM3-C-B11-SS-0110, DAM3-C-B11-S-6133 | 100% | 2026-11-07 | 2026-11-14 |  |  | Construction Cost [115805]; Structural Steel Fixer [112 h]; Mobile Crane [56 h]; General Labour [112 h]; Equipment Operator [112 h] | 115,805.2 | 115,805.2 | 1 | 05 | 02 | 11 | H1.C.A1.SA.FI.G.0730 |  |  |  |  |  |  |
| DAM3-C-B11-SS-1020 |  | Epoxy paint to steel members at office area | 4d | 2026-11-05 | 2026-11-09 | DAM3-C-B11-SS-620 |  |  |  | 53.5d | 0d | Painter [112 h]; Construction Cost [23161] | 23,161.04 |  | 1 | 05 | 02 | 11 | H1.C.A1.SA.FI.G.0730 |  |  |  |  |  |  |
| DAM3-C-B11-SS-1030 |  | Steel members for external platform | 7d | 2026-11-05 | 2026-11-12 | DAM3-C-B11-SS-620 |  |  |  | 49.5d | 0d | Construction Cost [18670.8]; General Labour [112 h]; Mobile Crane [56 h]; Structural Steel Fixer [112 h]; Equipment Operator [112 h] | 18,670.78 |  | 1 | 05 | 02 | 11 | H1.C.A1.SA.FI.G.0730 |  |  |  |  |  |  |
| DAM3-C-B11-SS-1040 |  | Epoxy paint for external platform | 5d | 2026-11-14 | 2026-11-18 | DAM3-C-B11-SS-1030, DAM3-C-B11-SS-1030 FF |  |  |  | 49.5d | 0d | Painter [80 h]; Construction Cost [3734.16] | 3,734.16 |  | 1 | 05 | 02 | 11 | H1.C.A1.SA.FI.G.0730 |  |  |  |  |  |  |

| ID | WBS | Activity | Duration | Start | Finish | Predecessors | Complete | Remaining | Planned start | Planned finish | Total float | Free float | Resources | Cost | Actual cost | Phasing Code Category | Discipline | Project component code | Zone # | 00 Activity ID |
| --- | --- | --- | --- | --- | --- | --- | --- | --- | --- | --- | --- | --- | --- | --- | --- | --- | --- | --- | --- | --- |
|  | 2 | **ARCHITECTURAL** |  | 2026-07-30 | 2026-12-28 |  |  |  |  |  |  |  |  |  |  |  |  |  |  |  |
|  | 1 | **MASONARY WORKS** |  | 2026-08-06 | 2026-09-06 |  |  |  |  |  |  |  |  |  |  |  |  |  |  |  |
| DAM3-C-B11-A-0120 |  | Block work at factory area | 5d | 2026-08-06 A | 2026-08-11 A | DAM3-C-B11-S-382, DAM3-C-B11-SS-0110 | 100% |  | 2026-12-16 | 2026-12-21 |  |  | AAC panel erector [240 h]; General Labour [240 h]; Equipment Operator [240 h]; Mobile Crane [120 h]; Construction Cost [58338.7] | 58,338.72 | 58,338.72 | 05 | 03 | 11 |  |  |
| DAM3-C-B11-A-0150 |  | Block work at office area | 3d | 2026-08-10 A | 2026-09-06 A | DAM3-C-B11-SS-0140 SS, DAM3-C-B11-SS-620 | 100% |  | 2026-12-28 | 2026-12-30 |  |  | AAC panel erector [160 h]; General Labour [160 h]; Mobile Crane [56 h]; Equipment Operator [160 h]; Construction Cost [6179.18] | 6,179.18 | 6,179.18 | 05 | 03 | 11 |  |  |
| DAM3-C-B11-A-170 |  | Block work at toilet area | 4d | 2026-08-13 A | 2026-09-06 A | DAM3-C-B11-A-0150, DAM3-C-B11-SS-1020 | 100% |  | 2027-01-05 | 2027-01-09 |  |  | Mason [112 h]; Construction Cost [14436.3] | 14,436.31 | 14,436.31 | 05 | 03 | 11 | 1 |  |
|  | 5 | **WALL FINISHES** |  | 2026-09-27 | 2026-12-12 |  |  |  |  |  |  |  |  |  |  |  |  |  |  |  |
| DAM3-C-B11-A-180 |  | Internal Wall Plaster | 10d | 2026-09-27 A | 2026-11-24 | DAM3-C-B11-A-170, DAM3-C-B11-E-183, DAM3-C-B11-S-517, DAM3-C-B11-SS-1040 | 50% | 5d | 2026-11-26 | 2026-12-07 | 49.5d | 0d | Mason [240 h]; Construction Cost [48590.2] | 48,590.16 | 24,295.08 | 05 | 03 | 11 | 1 | H1.C.A1.SA.FI.G.0710 |
| DAM3-C-B11-A-230 |  | Paint to Plaster (Primer, Putty & First Coat) | 4d | 2026-12-08 | 2026-12-12 | DAM3-C-B11-A-250 |  |  |  |  | 49.5d | 0d | Painter [112 h]; Construction Cost [44167.3] | 44,167.3 |  | 05 | 03 | 11 | 1 | H1.C.A1.SA.FI.G.0730 |
|  | 2 | **CIELING FINISHES** |  | 2026-12-06 | 2026-12-10 |  |  |  |  |  |  |  |  |  |  |  |  |  |  |  |
| DAM3-C-B11-A-240 |  | Installation of Ceiling Gypsum Board | 5d | 2026-12-06 | 2026-12-10 | DAM3-C-B11-A-220, DAM3-C-B11-S-517 |  |  |  |  | 59.5d | 0d | Carperter [80 h]; Construction Cost [46792.3] | 46,792.3 |  | 05 | 03 | 11 | 1 | H1.C.A1.SA.FI.G.0820 |
|  | 6 | **FLOOR FINISHES** |  | 2026-11-30 | 2026-12-19 |  |  |  |  |  |  |  |  |  |  |  |  |  |  |  |
| DAM3-C-B11-A-220 |  | Tiles for Toilet | 5d | 2026-11-30 | 2026-12-05 | DAM3-C-B11-A-370 |  |  |  |  | 49.5d | 0d | Tile Fixer [112 h]; Construction Cost [46530.7] | 46,530.71 |  | 05 | 03 | 11 | 1 | H1.C.A1.SA.FI.G.0640 |
| DAM3-C-B11-A-250 |  | Tiles for Office Area | 2d | 2026-12-06 | 2026-12-07 | DAM3-C-B11-A-220 |  |  |  |  | 49.5d | 0d | Tile Fixer [32 h]; Construction Cost [26867.3] | 26,867.31 |  | 05 | 03 | 11 |  |  |
| DAM3-C-B11-A-390 |  | Granite strip | 2d | 2026-12-08 | 2026-12-09 | DAM3-C-B11-A-558, DAM3-C-B11-A-250 |  |  |  |  | 51.5d | 0d | Tile Fixer [32 h]; Construction Cost [671.12] | 671.12 |  | 05 | 03 | 11 | 1 | H1.C.A1.SA.FI.G.0640 |
| DAM3-C-B11-A-420 |  | Epoxy paint | 7d | 2026-12-12 | 2026-12-19 | DAM3-C-B11-A-390, DAM3-C-B11-A-240 |  |  |  |  | 59.5d | 58.5d | Painter [112 h]; Construction Cost [115420] | 115,419.76 |  | 05 | 03 | 11 |  |  |
|  | 3 | **DOORS & WINDOWS** |  | 2026-10-06 | 2026-11-19 |  |  |  |  |  |  |  |  |  |  |  |  |  |  |  |
| DAM3-C-B11-A-558 |  | Skylight fixtures installation | 1d | 2026-10-06 A | 2026-10-08 A | DAM3-C-B11-A-557 | 100% |  | 2026-11-30 | 2026-11-30 |  |  | Carperter [16 h]; Construction Cost [6489.89] | 6,489.89 | 6,489.89 | 05 | 03 | 11 |  |  |
| DAM3-C-B11-A-552 |  | Window (CW1) | 7d | 2026-11-05 | 2026-11-12 | DAM3-C-B11-SS-0130 |  |  |  |  | 66.5d | 0d | Carperter [112 h]; Construction Cost [94173.2] | 94,173.21 |  | 05 | 03 | 11 |  |  |
| DAM3-C-B11-A-553 |  | Roll up Shutter Door | 1d | 2026-11-14 | 2026-11-14 | DAM3-C-B11-A-552 |  |  |  |  | 66.5d | 0d | Carperter [16 h]; Construction Cost [68619.2] | 68,619.2 |  | 05 | 03 | 11 |  |  |
| DAM3-C-B11-A-200 |  | Supply and install (D5) 1000*2200mm single leaf steel door with door | 1d | 2026-11-15 | 2026-11-15 | DAM3-C-B11-A-553 |  |  |  |  | 66.5d | 0d | Carperter [16 h]; Construction Cost [16016.2] | 16,016.16 |  | 05 | 03 | 11 |  |  |
| DAM3-C-B11-A-554 |  | Supply and install (D4) 800*2200 mm single leaf aluminum door with door | 1d | 2026-11-16 | 2026-11-16 | DAM3-C-B11-A-200 |  |  |  |  | 66.5d | 0d | Carperter [16 h]; Construction Cost [22737.8] | 22,737.85 |  | 05 | 03 | 11 |  |  |
| DAM3-C-B11-A-555 |  | Supply and install (D7) 1000*2200 mm single leaf aluminum door with door | 1d | 2026-11-17 | 2026-11-17 | DAM3-C-B11-A-554 |  |  |  |  | 66.5d | 0d | Carperter [16 h]; Construction Cost [7811.07] | 7,811.07 |  | 05 | 03 | 11 |  |  |
| DAM3-C-B11-A-556 |  | Supply and install (D3) 1000*2200 mm single leaf aluminum door with door | 1d | 2026-11-18 | 2026-11-18 | DAM3-C-B11-A-555 |  |  |  |  | 66.5d | 0d | Carperter [16 h]; Construction Cost [16016.2] | 16,016.16 |  | 05 | 03 | 11 |  |  |
| DAM3-C-B11-A-557 |  | Supply and install fire rated 45 min (D2) 1200*2200 mm single leaf steel door | 1d | 2026-11-19 | 2026-11-19 | DAM3-C-B11-A-556 |  |  |  |  | 66.5d | 0d | Carperter [16 h]; Construction Cost [16711.5] | 16,711.52 |  | 05 | 03 | 11 |  |  |

| ID | WBS | Activity | Duration | Start | Finish | Predecessors | Complete | Planned start | Planned finish | Total float | Free float | Resources | Cost | Actual cost | Phasing Code Category | Discipline | Project component code | Ordinal Start | Ordinal Finish | 00 Activity ID | Ordinal Duration | Zone # |
| --- | --- | --- | --- | --- | --- | --- | --- | --- | --- | --- | --- | --- | --- | --- | --- | --- | --- | --- | --- | --- | --- | --- |
|  | 4 | **WATER PROOFING WORKS** |  | 2026-11-25 | 2026-11-29 |  |  |  |  |  |  |  |  |  |  |  |  |  |  |  |  |  |
| DAM3-C-B11-A-370 |  | Waterproofing membrane for toilets | 4d | 2026-11-25 | 2026-11-29 | DAM3-C-B11-M-200, DAM3-C-B11-A-180 |  |  |  | 49.5d | 0d | General Labour [64 h]; Construction Cost [4879.02] | 4,879.02 |  | 05 | 03 | 11 |  |  |  |  |  |
|  | 7 | **METAL WORKS** |  | 2026-07-30 | 2026-12-20 |  |  |  |  |  |  |  |  |  |  |  |  |  |  |  |  |  |
| DAM3-C-B11-A-300 |  | Galvanised Steel Gratings | 2d | 2026-07-30 A | 2026-07-30 A | DAM3-C-B11-A-292 | 100% | 2027-02-21 | 2027-02-23 |  |  | Steel Fixer [32 h]; General Labour [32 h]; Construction Cost [6455.16] | 6,455.16 | 6,455.16 | 05 | 03 | 11 |  |  |  |  |  |
| DAM3-C-B11-A-290 |  | Steel Ladder | 2d | 2026-12-10 | 2026-12-12 | DAM3-C-B11-A-390 |  |  |  | 51.5d | 0d | Steel Fixer [32 h]; General Labour [32 h]; Construction Cost [9839.16] | 9,839.16 |  | 05 | 03 | 11 |  |  |  |  |  |
| DAM3-C-B11-A-291 |  | Steel railing works | 4d | 2026-12-13 | 2026-12-16 | DAM3-C-B11-A-290 |  |  |  | 51.5d | 0d | Steel Fixer [64 h]; General Labour [64 h]; Construction Cost [1533.98] | 1,533.98 |  | 05 | 03 | 11 |  |  |  |  |  |
| DAM3-C-B11-A-292 |  | Aluminium composite panel | 3d | 2026-12-17 | 2026-12-20 | DAM3-C-B11-A-291 |  |  |  | 51.5d | 0d | Steel Fixer [80 h]; General Labour [80 h]; Construction Cost [175889] | 175,888.76 |  | 05 | 03 | 11 |  |  |  |  |  |
|  | 8 | **SPECIALTIES** |  | 2026-12-21 | 2026-12-28 |  |  |  |  |  |  |  |  |  |  |  |  |  |  |  |  |  |
| DAM3-C-B11-A-320 |  | Installation of fittings | 3d | 2026-12-21 | 2026-12-23 | DAM3-C-B11-A-300 |  |  |  | 51.5d | 0d | Plumber [80 h]; Construction Cost [22981.3] | 22,981.27 |  | 05 | 03 | 11 |  |  |  |  |  |
| DAM3-C-B11-A-570 |  | Identification sign; ID01 & ID02 | 3d | 2026-12-24 | 2026-12-27 | DAM3-C-B11-A-320 |  |  |  | 51.5d | 0d | Mason [48 h]; Construction Cost [9630.56] | 9,630.56 |  | 05 | 03 | 11 |  |  |  |  |  |
| DAM3-C-B11-A-340 |  | Furniture Installation | 1d | 2026-12-28 | 2026-12-28 | DAM3-C-B11-A-570 |  |  |  | 51.5d | 50.5d | General Labour [16 h]; Mason [16 h]; Construction Cost [12468.8] | 12,468.83 |  | 05 | 03 | 11 |  |  |  |  |  |
|  | 3 | **MECHANICAL** |  | 2026-07-05 | 2026-12-30 |  |  |  |  |  |  |  |  |  |  |  |  |  |  |  |  |  |
|  | 1 | **HVAC** |  | 2026-12-13 | 2026-12-27 |  |  |  |  |  |  |  |  |  |  |  |  |  |  |  |  |  |
|  | 1 | **FIRST STAGE** |  | 2026-12-19 | 2026-12-22 |  |  |  |  |  |  |  |  |  |  |  |  |  |  |  |  |  |
| DAM3-C-B11-M-140 |  | Installation of HVAC Ducts | 2d | 2026-12-19 | 2026-12-20 | DAM3-C-B11-M-160 |  |  |  | 49.5d | 0d | Ductman [32 h]; Construction Cost [149489] | 149,489.33 |  | 05 | 04 | 11 | 0 | 0 | H1.C.A1.0A.MH.G.1040 | 0 | 1 |
| DAM3-C-B11-M-170 |  | Installation of Duct insulation | 2d | 2026-12-21 | 2026-12-22 | DAM3-C-B11-M-140 |  |  |  | 49.5d | 0d | Ductman [32 h]; Construction Cost [21205.4] | 21,205.4 |  | 05 | 04 | 11 |  |  |  |  |  |
|  | 2 | **SECOND STAGE** |  | 2026-12-13 | 2026-12-27 |  |  |  |  |  |  |  |  |  |  |  |  |  |  |  |  |  |
| DAM3-C-B11-M-130 |  | Installation of Exhaust Fans | 2d | 2026-12-13 | 2026-12-14 | DAM3-C-B11-A-230 |  |  |  | 49.5d | 0d | AC Technician [32 h]; Construction Cost [7938.56] | 7,938.56 |  | 05 | 04 | 11 | 0 | 0 | H1.C.A1.0A.MH.X.4050 | 0 | 1 |
| DAM3-C-B11-M-160 |  | Installation of Wall Propeller Type Exhaust Fan | 3d | 2026-12-15 | 2026-12-17 | DAM3-C-B11-M-130 |  |  |  | 49.5d | 0d | AC Technician [64 h]; Construction Cost [46831.6] | 46,831.64 |  | 05 | 04 | 11 |  |  |  |  |  |
| DAM3-C-B11-M-339 |  | Installation of Diffuser | 2d | 2026-12-23 | 2026-12-24 | DAM3-C-B11-M-170 |  |  |  | 49.5d | 0d | Ductman [32 h]; Construction Cost [2144] | 2,144 |  | 05 | 04 | 11 | 0 | 0 | H1.C.A1.0A.MH.G.3010 | 0 | 1 |
| DAM3-C-B11-M-340 |  | Supply, install, test and commission door grilles & exhaust louvers | 2d | 2026-12-26 | 2026-12-27 | DAM3-C-B11-M-339 |  |  |  | 49.5d | 0d | Ductman [32 h]; Construction Cost [5574.4] | 5,574.4 |  | 05 | 04 | 11 | 0 | 0 | H1.C.A1.0A.MH.G.3010 | 0 | 1 |
|  | 2 | **FIRE FIGHTING SYSTEM** |  | 2026-08-29 | 2026-12-30 |  |  |  |  |  |  |  |  |  |  |  |  |  |  |  |  |  |
|  | 1 | **FIRST STAGE** |  | 2026-08-29 | 2026-09-07 |  |  |  |  |  |  |  |  |  |  |  |  |  |  |  |  |  |
| DAM3-C-B11-M-300 |  | Installation of Fire Fighting Pipes (Seamless Black Steel) | 5d | 2026-08-29 A | 2026-09-05 A | DAM3-C-B11-A-230 | 100% | 2026-12-23 | 2026-12-28 |  |  | Pipe Fitter [112 h]; Construction Cost [72394.8] | 72,394.75 | 72,394.75 | 05 | 04 | 11 | 0 | 0 | H1.C.A1.0A.MF.G.1010 | 0 | 1 |
| DAM3-C-B11-M-310 |  | Installation of Fire Fighting Valve | 3d | 2026-08-30 A | 2026-09-07 A | DAM3-C-B11-M-300 | 100% | 2026-12-28 | 2026-12-31 |  |  | Pipe Fitter [80 h]; Construction Cost [12199.4] | 12,199.4 | 12,199.4 | 05 | 04 | 11 | 0 | 0 | H1.C.A1.0A.MF.G.2010 | 0 | 1 |

| ID | WBS | Activity | Duration | Start | Finish | Predecessors | Complete | Remaining | Planned start | Planned finish | Total float | Free float | Resources | Cost | Actual cost | Ordinal Start | Ordinal Finish | 00 Activity ID | Ordinal Duration | Zone # | Phasing Code Category | Discipline | Project component code |
| --- | --- | --- | --- | --- | --- | --- | --- | --- | --- | --- | --- | --- | --- | --- | --- | --- | --- | --- | --- | --- | --- | --- | --- |
|  | 2 | **SECOND STAGE** |  | 2026-12-13 | 2026-12-30 |  |  |  |  |  |  |  |  |  |  |  |  |  |  |  |  |  |  |
| DAM3-C-B11-M-320 |  | Installation of Fire Hose Cabinet | 3d | 2026-12-13 | 2026-12-15 | DAM3-C-B11-M-310 |  |  |  |  | 58.5d | 56d | Pipe Fitter [48 h]; Construction Cost [15158.6] | 15,158.56 |  | 0 | 0 | H1.C.A1.0A.MF.G.3010 | 0 | 1 | 05 | 04 | 11 |
| DAM3-C-B11-M-370 |  | Supply, install, test and commission Fire Department Connection(FDC) | 3d | 2026-12-28 | 2026-12-30 | DAM3-C-B11-M-340 |  |  |  |  | 49.5d | 48.5d | Pipe Fitter [48 h]; Construction Cost [2706.06] | 2,706.06 |  | 0 | 0 | H1.C.A1.0A.MF.G.3010 | 0 | 1 | 05 | 04 | 11 |
|  | 3 | **SEWER AND DRAINAGE SYSTEM** |  | 2026-07-05 | 2026-12-23 |  |  |  |  |  |  |  |  |  |  |  |  |  |  |  |  |  |  |
|  | 1 | **FIRST STAGE** |  | 2026-07-05 | 2026-12-07 |  |  |  |  |  |  |  |  |  |  |  |  |  |  |  |  |  |  |
| DAM3-C-B11-M-200 |  | Installation of Sanitary Waste / Drainage Pipes | 4d | 2026-07-05 A | 2026-07-08 A | DAM3-C-B11-S-347 | 100% |  |  |  |  |  | Plumber [64 h]; Construction Cost [18585.1] | 18,585.14 | 18,585.14 | 0 | 0 | H1.C.K1.00.MP.G.1020 | 0 | 1 | 05 | 04 | 11 |
| DAM3-C-B11-M-380 |  | Installation of Trench drain | 5d | 2026-07-06 A | 2026-07-08 A | DAM3-C-B11-M-220 | 100% |  | 2027-01-27 | 2027-02-02 |  |  | Plumber [80 h]; Construction Cost [11508.8] | 11,508.8 | 11,508.8 |  |  |  |  |  | 05 | 04 | 11 |
| DAM3-C-B11-M-220 |  | Installation of Floor Drain | 2d | 2026-12-06 | 2026-12-07 | DAM3-C-B11-M-200, DAM3-C-B11-A-220 |  |  |  |  | 55.5d | 0d | Plumber [32 h]; Construction Cost [11056] | 11,055.96 |  |  |  |  |  | 1 | 05 | 04 | 11 |
|  | 2 | **SECOND STAGE** |  | 2026-12-08 | 2026-12-23 |  |  |  |  |  |  |  |  |  |  |  |  |  |  |  |  |  |  |
| DAM3-C-B11-M-180 |  | Installation of Electric Water Heater | 2d | 2026-12-08 | 2026-12-09 | DAM3-C-B11-M-380 |  |  |  |  | 55.5d | 0d | Plumber [32 h]; Construction Cost [1819.51] | 1,819.51 |  | 0 | 0 | H1.C.K1.00.MP.G.1030 | 0 | 1 | 05 | 04 | 11 |
| DAM3-C-B11-M-190 |  | Installation of Sanitary Fixture and Accessories | 4d | 2026-12-10 | 2026-12-14 | DAM3-C-B11-M-180 |  |  |  |  | 55.5d | 0d | Plumber [64 h]; Construction Cost [19921.7] | 19,921.72 |  | 0 | 0 | H1.C.K1.00.MP.G.2040 | 0 | 1 | 05 | 04 | 11 |
| DAM3-C-B11-M-210 |  | Installation of Lavotary /Wash Basin | 2d | 2026-12-15 | 2026-12-16 | DAM3-C-B11-M-180, DAM3-C-B11-M-190 |  |  |  |  | 55.5d | 0d | Plumber [32 h]; Construction Cost [21416.7] | 21,416.68 |  |  |  |  |  | 1 | 05 | 04 | 11 |
| DAM3-C-B11-M-270 |  | Installation of Bib Tap | 2d | 2026-12-17 | 2026-12-19 | DAM3-C-B11-M-190, DAM3-C-B11-M-210 |  |  |  |  | 55.5d | 0d | Plumber [32 h]; Construction Cost [1900.66] | 1,900.66 |  |  |  |  |  |  | 05 | 04 | 11 |
| DAM3-C-B11-M-428 |  | Installation of Water Tap | 2d | 2026-12-20 | 2026-12-21 | DAM3-C-B11-M-210, DAM3-C-B11-M-270 |  |  |  |  | 55.5d | 0d | Plumber [32 h]; Construction Cost [2874.14] | 2,874.14 |  |  |  |  |  |  | 05 | 04 | 11 |
| DAM3-C-B11-M-429 |  | Installation of Roof Vent Cap | 2d | 2026-12-22 | 2026-12-23 | DAM3-C-B11-M-428 |  |  |  |  | 55.5d | 54.5d | Pipe Fitter [32 h]; Construction Cost [927.12] | 927.12 |  |  |  |  |  |  | 05 | 04 | 11 |
|  | 4 | **WATER SUPPLY SYSTEM** |  | 2026-10-01 | 2026-12-17 |  |  |  |  |  |  |  |  |  |  |  |  |  |  |  |  |  |  |
|  | 1 | **FIRST STAGE** |  | 2026-10-01 | 2026-10-05 |  |  |  |  |  |  |  |  |  |  |  |  |  |  |  |  |  |  |
| DAM3-C-B11-M-280 |  | Installation of Water Supply Valve | 2d | 2026-10-01 A | 2026-10-05 A | DAM3-C-B11-M-290 | 100% |  | 2026-12-29 | 2026-12-31 |  |  | Plumber [32 h]; Construction Cost [18274.3] | 18,274.27 | 18,274.27 | 0 | 0 | H1.C.K1.00.MP.G.2010 | 0 | 1 | 05 | 04 | 11 |
| DAM3-C-B11-M-290 |  | Installation of Water Supply Pipes | 4d | 2026-10-01 A | 2026-10-05 A | DAM3-C-B11-A-230 | 100% |  | 2026-12-24 | 2026-12-29 |  |  | Plumber [64 h]; Construction Cost [23318.4] | 23,318.41 | 23,318.41 | 0 | 0 | H1.C.K1.00.MP.G.1010 | 0 | 1 | 05 | 04 | 11 |
|  | 2 | **SECOND STAGE** |  | 2026-12-13 | 2026-12-17 |  |  |  |  |  |  |  |  |  |  |  |  |  |  |  |  |  |  |
| DAM3-C-B11-M-330 |  | Capped connection | 5d | 2026-12-13 | 2026-12-17 | DAM3-C-B11-M-280 |  |  |  |  | 60.5d | 59.5d | Plumber [80 h]; Construction Cost [278.13] | 278.13 |  |  |  |  |  |  | 05 | 04 | 11 |
|  | 4 | **ELECTRICAL** |  | 2026-06-01 | 2027-02-16 |  |  |  |  |  |  |  |  |  |  |  |  |  |  |  |  |  |  |
|  | 1 | **FIRST STAGE** |  | 2026-06-01 | 2026-12-10 |  |  |  |  |  |  |  |  |  |  |  |  |  |  |  |  |  |  |
| DAM3-C-B11-E-113 |  | Installation of Earthing and Grounding | 3d | 2026-06-01 A | 2026-12-10 | DAM3-C-B11-E-223 | 90% | 0.3d | 2027-02-27 | 2027-03-01 | 64.5d | 51.7d | Electrician [80 h]; Construction Cost [19646.5] | 19,646.47 | 17,681.82 |  |  | H1.C.K1.00.EM.G.2040 |  | 1 | 05 | 05 | 11 |
| DAM3-C-B11-E-143 |  | Installation of Conduits and wiring outlets - Fire Alarm System | 4d | 2026-06-02 A | 2026-11-11 | DAM3-C-B11-A-170 | 50% | 2d | 2027-01-26 | 2027-01-30 | 62.8d | 0d | Electrician [64 h]; Construction Cost [1768.31] | 1,768.31 | 884.15 |  |  | H1.C.K1.00.EL.G.1020 |  | 1 | 05 | 05 | 11 |
| DAM3-C-B11-E-183 |  | Installation of Sleeves & Power outlet | 8d | 2026-06-02 A | 2026-11-14 | DAM3-C-B11-A-170 | 50% | 4d | 2027-01-26 | 2027-02-03 | 53.5d | 4d | Electrician [128 h]; Construction Cost [2920.45] | 2,920.45 | 1,460.23 |  |  |  |  | 1 | 05 | 05 | 11 |
| DAM3-C-B11-E-163 |  | Installation of Conduites for Lighting Fixture | 4d | 2026-09-27 A | 2026-11-22 | DAM3-C-B11-E-133 | 90% | 0.4d | 2026-12-03 | 2026-12-07 | 62.8d | 0d | Electrician [64 h]; Construction Cost [8462.97] | 8,462.97 | 7,616.67 |  |  | H1.C.K1.00.EM.G.2030 |  | 1 | 05 | 05 | 11 |
| DAM3-C-B11-E-233 |  | Installation of Wires | 4d | 2026-11-22 | 2026-11-26 | DAM3-C-B11-E-163 |  |  |  |  | 62.8d | 0d | Electrician [64 h]; Construction Cost [16925.9] | 16,925.94 |  |  |  |  |  |  | 05 | 05 | 11 |
| DAM3-C-B11-E-223 |  | Installation of LV Cables | 4d | 2026-12-06 | 2026-12-10 | DAM3-C-B11-E-213 |  |  |  |  | 64.5d | 0d | Electrician [64 h]; Construction Cost [36390] | 36,389.98 |  |  |  |  |  |  | 05 | 05 | 11 |

| ID | WBS | Activity | Duration | Start | Finish | Predecessors | Complete | Remaining | Planned start | Planned finish | Total float | Free float | Resources | Cost | Actual cost | 00 Activity ID | Zone # | Phasing Code Category | Discipline | Project component code | AMH Tender Act. ID | Tender Original Duration |
| --- | --- | --- | --- | --- | --- | --- | --- | --- | --- | --- | --- | --- | --- | --- | --- | --- | --- | --- | --- | --- | --- | --- |
|  | 2 | **SECOND STAGE** |  | 2026-11-12 | 2027-02-16 |  |  |  |  |  |  |  |  |  |  |  |  |  |  |  |  |  |
| DAM3-C-B11-E-123 |  | Installation of Fire Alarm Control Panel | 4d | 2026-11-12 | 2026-11-16 | DAM3-C-B11-E-143 |  |  |  |  | 62.8d | 0d | Electrician [64 h]; Construction Cost [19451.4] | 19,451.37 |  | H1.C.K1.00.EL.X.4120 | 1 | 05 | 05 | 11 |  |  |
| DAM3-C-B11-E-133 |  | Installation of Fire Detectors & Accessories | 4d | 2026-11-17 | 2026-11-21 | DAM3-C-B11-E-123 |  |  |  |  | 62.8d | 0d | Electrician [64 h]; Construction Cost [56740.4] | 56,740.37 |  | H1.C.K1.00.EL.G.3020 | 1 | 05 | 05 | 11 |  |  |
| DAM3-C-B11-E-153 |  | Installation of Lighting fixtures | 4d | 2026-11-26 | 2026-12-01 | DAM3-C-B11-E-233 |  |  |  |  | 69.8d | 61.6d | Electrician [64 h]; Construction Cost [76166.7] | 76,166.74 |  | H1.C.K1.00.EM.G.3010 | 1 | 05 | 05 | 11 |  |  |
| DAM3-C-B11-E-193 |  | Installation of Main Distribution Board | 2d | 2026-11-26 | 2026-11-29 | DAM3-C-B11-E-233 |  |  |  |  | 64.5d | 0d | Electrician [32 h]; Construction Cost [32472.7] | 32,472.73 |  | H1.C.K1.00.EM.G.2020 | 1 | 05 | 05 | 11 |  |  |
| DAM3-C-B11-E-410 |  | Installation of CCTV System | 5d | 2026-11-26 | 2026-12-02 | DAM3-C-B11-E-233 |  |  |  |  | 62.8d | 0d | Plumber [112 h]; Construction Cost [76349.2] | 76,349.24 |  |  |  | 05 | 05 | 11 |  |  |
| DAM3-C-B11-E-243 |  | Installation of LP-1 Panel | 2d | 2026-11-29 | 2026-12-01 | DAM3-C-B11-E-193 |  |  |  |  | 64.5d | 0d | Electrician [32 h]; Construction Cost [18403.5] | 18,403.54 |  | H1.C.K1.00.EM.G.2020 | 1 | 05 | 05 | 11 |  |  |
| DAM3-C-B11-E-253 |  | Installation of PP-AC panel | 2d | 2026-12-01 | 2026-12-03 | DAM3-C-B11-E-243 |  |  |  |  | 64.5d | 0d | Electrician [32 h]; Construction Cost [21648.5] | 21,648.48 |  | H1.C.K1.00.EM.G.2020 | 1 | 05 | 05 | 11 |  |  |
| DAM3-C-B11-E-273 |  | Installation of Access Control System | 5d | 2026-12-02 | 2026-12-08 | DAM3-C-B11-E-410 |  |  |  |  | 62.8d | 0d | Electrician [80 h]; Construction Cost [27616.9] | 27,616.86 |  | H1.C.K1.00.EM.G.2040 | 1 | 05 | 05 | 11 |  |  |
| DAM3-C-B11-E-213 |  | Installation of Telephone Cabinet | 2d | 2026-12-03 | 2026-12-06 | DAM3-C-B11-E-253 |  |  |  |  | 64.5d | 0d | Electrician [32 h]; Construction Cost [26991.1] | 26,991.08 |  |  | 1 | 05 | 05 | 11 |  |  |
| DAM3-C-B11-E-283 |  | Monitor Modules for Fire Alarm | 2d | 2026-12-08 | 2026-12-10 | DAM3-C-B11-E-273 |  |  |  |  | 62.8d | 0d | Electrician [32 h]; Construction Cost [3882.38] | 3,882.38 |  | H1.C.K1.00.EM.G.2040 | 1 | 05 | 05 | 11 |  |  |
| DAM3-C-B11-E-293 |  | Line Isolator Modules for Fire Alarm | 2d | 2026-12-10 | 2026-12-13 | DAM3-C-B11-E-283 |  |  |  |  | 62.8d | 0d | Electrician [32 h]; Construction Cost [185.4] | 185.4 |  | H1.C.K1.00.EM.G.2040 | 1 | 05 | 05 | 11 |  |  |
| DAM3-C-B11-E-173 |  | Installation of Wiring Devices | 4d | 2026-12-13 | 2026-12-16 | DAM3-C-B11-E-183, DAM3-C-B11-A-230 |  |  |  |  | 51.5d | 0d | Electrician [64 h]; Construction Cost [19435.1] | 19,435.09 |  | H1.C.K1.00.EM.G.3020 | 1 | 05 | 05 | 11 |  |  |
| DAM3-C-B11-E-303 |  | Firewarning flash light with sounder; wall mounted, Weather proof | 2d | 2026-12-13 | 2026-12-15 | DAM3-C-B11-E-293 |  |  |  |  | 62.8d | 55.6d | Electrician [32 h]; Construction Cost [3082.69] | 3,082.69 |  | H1.C.K1.00.EM.G.2040 | 1 | 05 | 05 | 11 |  |  |
| DAM3-C-B11-E-203 |  | Installation of Disconnect Switches | 2d | 2026-12-17 | 2026-12-19 | DAM3-C-B11-E-173 |  |  |  |  | 51.5d | 40d | Electrician [32 h]; Construction Cost [30236] | 30,235.95 |  |  |  | 05 | 05 | 11 |  |  |
| DAM3-C-B11-E-420 |  | Installation of Solar power plant | 4d | 2027-02-11 | 2027-02-16 | DAM3-C-B10-E-420 |  |  |  |  | 7d | 0d | Plumber [112 h]; Construction Cost [253269] | 253,268.71 |  |  |  | 05 | 05 | 11 |  |  |
|  | 2 | **SITE INFRASTRUCTURE** |  | 2026-01-19 | 2027-02-27 |  |  |  |  |  |  |  |  |  |  |  |  |  |  |  |  |  |
|  | 1 | **SITE WORKS** |  | 2026-01-19 | 2026-02-28 |  |  |  |  |  |  |  |  |  |  |  |  |  |  |  |  |  |
| DAM3-C-GEN-180 |  | Initial Site Survey and Setting out | 3d | 2026-01-19 A | 2026-01-24 A | DAM3-C-GEN-10 | 100% |  | 2026-03-21 | 2026-03-23 |  |  | General Labour [48 h]; Surveyor [48 h]; Construction Cost |  |  | H1.C.X0.00.SW.X.2010 | 1 | 05 | 07 | 12 |  |  |
| DAM3-C-GEN-190 |  | Excavation to the target grading level | 20d | 2026-02-10 A | 2026-02-28 A | DAM3-C-GEN-180 | 100% |  | 2026-03-24 | 2026-04-15 |  |  | General Labour [320 h]; Equipment Operator [320 h]; Truck [40 h]; Excavator [40 h]; Mini Roller Compactor [40 h]; Construction Cost [197691] | 197,690.88 | 197,690.88 | H1.C.K1.00.SW.F.1010 | 1 | 05 | 07 | 12 | PH1-MHR-ST-640 | 12 |
|  | 4 | **NETWORKS** |  | 2026-08-01 | 2027-01-31 |  |  |  |  |  |  |  |  |  |  |  |  |  |  |  |  |  |
|  | 6 | **INTERNAL FIRE FIGHTING WATER SUPPLY SYSTEM (OUTSIDE BUILDING UNITS)** |  | 2026-08-01 | 2026-11-18 |  |  |  |  |  |  |  |  |  |  |  |  |  |  |  |  |  |
| DAM3-C-ENV-F-212 |  | Excavation for External Fire Fighting Works | 7d | 2026-08-01 A | 2026-11-05 | DAM3-E-SA-EX-700, DAM3-E-SA-EX-720, DAM3-E-MT-ENV-2060, DAM3-C-B1-SS-0140, DAM3-C-GEN-190 | 90% | 0.7d | 2026-10-20 | 2026-10-28 | 21.8d | 0d | General Labour [112 h]; Equipment Operator [112 h]; Excavator [56 h]; Construction Cost [40471.6] | 40,471.58 | 36,424.43 |  |  | 05 | 04 | 12 |  |  |
| DAM3-C-ENV-F-172 |  | Installation of HDPE PN16 Pipes (200 Dia) | 10d | 2026-08-02 A | 2026-11-07 | DAM3-C-ENV-F-212, DAM3-P-ST-M-430, DAM3-P-ST-EN-100 | 90% | 1d | 2026-10-28 | 2026-11-09 | 56.9d | 5.3d | Pipe Fitter [160 h]; Construction Cost [364244] | 364,244.28 | 327,819.85 |  |  | 05 | 04 | 12 |  |  |
| DAM3-C-ENV-F-192 |  | Installation of Valves | 5d | 2026-08-02 A | 2026-11-15 | DAM3-C-ENV-F-202, DAM3-P-ST-EN-110 | 80% | 1d | 2026-11-15 | 2026-11-21 | 51.6d | 0d | Plumber [80 h]; Construction Cost [86057.9] | 86,057.93 | 68,846.34 |  |  | 05 | 04 | 12 |  |  |
| DAM3-C-ENV-F-202 |  | Warning Tapes | 2d | 2026-08-03 A | 2026-11-14 | DAM3-C-ENV-F-172, DAM3-P-ST-M-660, DAM3-C-B7-S-517 | 80% | 0.4d | 2026-11-12 | 2026-11-15 | 51.6d | 0d | Plumber [32 h]; Construction Cost [40471.6] | 40,471.58 | 32,377.27 |  |  | 05 | 04 | 12 |  |  |
| DAM3-C-ENV-F-222 |  | Backfilling for External Fire Fighting Works | 14d | 2026-08-05 A | 2026-11-18 | DAM3-C-ENV-F-192 | 80% | 2.8d | 2026-11-21 | 2026-12-07 | 56d | 29.8d | General Labour [224 h]; Equipment Operator [224 h]; Mini Roller Compactor [112 h]; Construction Cost [40471.6] | 40,471.58 | 32,377.27 |  |  | 05 | 04 | 12 |  |  |

| ID | WBS | Activity | Duration | Start | Finish | Predecessors | Complete | Planned start | Planned finish | Total float | Free float | Resources | Cost | Actual cost | Phasing Code Category | Discipline | Project component code |
| --- | --- | --- | --- | --- | --- | --- | --- | --- | --- | --- | --- | --- | --- | --- | --- | --- | --- |
|  | 1 | **WATER SUPPLY SYSTEM** |  | 2026-11-21 | 2027-01-24 |  |  |  |  |  |  |  |  |  |  |  |  |
| DAM3-C-ENV-WS-786 |  | Excavation for Water Suppy Works | 7d | 2026-11-21 | 2026-11-28 | DAM3-C-ENV-F-212, DAM3-E-SA-EX-690, DAM3-E-SA-EX-710, DAM3-C-B4-M-810 |  |  |  | 9.5d | 0d | General Labour [112 h]; Equipment Operator [112 h]; Excavator [56 h]; Construction Cost [13950.4] | 13,950.39 |  | 05 | 04 | 12 |
| DAM3-C-ENV-WS-746 |  | Installation of HDPE PN16 Pipes for Cold Water Supply | 7d | 2026-11-29 | 2026-12-06 | DAM3-C-ENV-WS-786, DAM3-P-ST-EN-120 |  |  |  | 12.5d | 0d | Pipe Fitter [160 h]; Construction Cost [125553] | 125,553.5 |  | 05 | 04 | 12 |
| DAM3-C-ENV-WS-806 |  | Construction of Washout Chamber | 7d | 2026-12-07 | 2026-12-14 | DAM3-C-ENV-WS-746, DAM3-E-SA-EX-770, DAM3-E-SA-EX-810, DAM3-E-SA-EX-820, DAM3-P-ST-EN-150 |  |  |  | 19.5d | 0d | Mason [112 h]; Construction Cost [17314.2] | 17,314.15 |  | 05 | 04 | 12 |
| DAM3-C-ENV-WS-776 |  | Warning Tape | 2d | 2026-12-15 | 2026-12-16 | DAM3-C-ENV-WS-846 SS |  |  |  | 19.5d | 0d | Plumber [32 h]; Construction Cost [13950.4] | 13,950.39 |  | 05 | 04 | 12 |
| DAM3-C-ENV-WS-846 |  | Construction of Air Valve Chamber | 7d | 2026-12-15 | 2026-12-22 | DAM3-C-ENV-WS-806, DAM3-E-SA-EX-750, DAM3-E-SA-EX-760, DAM3-E-SA-EX-780, DAM3-E-SA-EX-830, DAM3-E-SA-EX-840, DAM3-P-ST-EN-140 |  |  |  | 19.5d | 0d | Mason [112 h]; Construction Cost [16236.4] | 16,236.37 |  | 05 | 04 | 12 |
| DAM3-C-ENV-WS-766 |  | Installation of Valves | 5d | 2026-12-17 | 2026-12-22 | DAM3-C-ENV-WS-776, DAM3-E-SA-EX-740, DAM3-E-SA-EX-790, DAM3-P-ST-EN-130, DAM3-P-ST-EN-160, DAM3-E-ST-E-0270 |  |  |  | 19.5d | 0d | Plumber [80 h]; Construction Cost [53930.1] | 53,930.05 |  | 05 | 04 | 12 |
| DAM3-C-ENV-WS-796 |  | Backfilling for Water Supply | 14d | 2026-12-23 | 2027-01-07 | DAM3-C-ENV-WS-766, DAM3-C-ENV-F-222 |  |  |  | 26.2d | 0d | General Labour [224 h]; Equipment Operator [224 h]; Mini Roller Compactor [112 h]; Construction Cost [13950.4] | 13,950.39 |  | 05 | 04 | 12 |
| DAM3-C-ENV-WS-826 |  | Supply and install Service connection -HDPE | 14d | 2027-01-09 | 2027-01-24 | DAM3-C-ENV-WS-796, DAM3-E-SA-EX-800 |  |  |  | 26.2d | 19d | Plumber [224 h]; Construction Cost [35694.4] | 35,694.38 |  | 05 | 04 | 12 |
|  | 9 | **SEWER & DRAINAGE SYSTEM** |  | 2026-08-22 | 2026-12-26 |  |  |  |  |  |  |  |  |  |  |  |  |
| DAM3-C-ENV-SW-496 |  | Construction of inspection chambers | 7d | 2026-08-22 A | 2026-10-03 A | DAM3-C-ENV-SW-536 | 100% | 2026-12-15 | 2026-12-23 |  |  | Mason [112 h]; Construction Cost [249925] | 249,925.25 | 249,925.25 | 05 | 04 | 12 |
| DAM3-C-ENV-SW-516 |  | Excavation for Sewer Works | 7d | 2026-08-22 A | 2026-10-04 A | DAM3-C-ENV-WS-746, DAM3-E-SA-EX-850, DAM3-E-SA-EX-860, DAM3-E-SA-EX-870, DAM3-E-SA-EX-880, DAM3-E-SA-EX-890 | 100% | 2026-11-24 | 2026-12-02 |  |  | General Labour [112 h]; Equipment Operator [112 h]; Excavator [56 h]; Construction Cost [22261.9] | 22,261.94 | 22,261.94 | 05 | 04 | 12 |
| DAM3-C-ENV-SW-536 |  | Construction of Manhole | 7d | 2026-08-22 A | 2026-09-10 A | DAM3-C-ENV-SW-486, DAM3-E-SA-EX-730, DAM3-E-SA-EX-900, DAM3-E-SA-EX-910, DAM3-E-SA-EX-920, DAM3-E-SA-EX-930, DAM3-E-SA-EX-940 | 100% | 2026-12-07 | 2026-12-15 |  |  | Mason [112 h]; Construction Cost [166049] | 166,049.07 | 166,049.07 | 05 | 04 | 12 |
| DAM3-C-ENV-SW-486 |  | Installation of UPVC Pipes for Sewer | 4d | 2026-09-16 A | 2026-10-05 A | DAM3-C-ENV-SW-516, DAM3-P-ST-EN-170 | 100% | 2026-12-12 | 2026-12-16 |  |  | Pipe Fitter [160 h]; Construction Cost [222619] | 222,619.45 | 222,619.45 | 05 | 04 | 12 |
| DAM3-C-ENV-SW-526 |  | Backfilling for Sewer Drainage | 14d | 2026-09-17 A | 2026-10-06 A | DAM3-C-ENV-SW-496 SS | 100% | 2026-12-21 | 2027-01-05 |  |  | General Labour [224 h]; Equipment Operator [224 h]; Mini Roller Compactor [112 h]; Construction Cost [22261.9] | 22,261.94 | 22,261.94 | 05 | 04 | 12 |
| DAM3-C-ENV-SW-506 |  | Gully trap | 10d | 2026-12-07 | 2026-12-17 | DAM3-C-ENV-SW-526, DAM3-P-ST-M-540 |  |  |  | 53.2d | 0d | Plumber [160 h]; Construction Cost [53541.6] | 53,541.58 |  | 05 | 04 | 12 |
| DAM3-C-ENV-SW-546 |  | UPVC pipe service connection | 7d | 2026-12-19 | 2026-12-26 | DAM3-C-ENV-SW-506 |  |  |  | 53.2d | 46d | Plumber [112 h]; Construction Cost [35567] | 35,567.03 |  | 05 | 04 | 12 |
|  | 2 | **IRRIGATION SYSTEM** |  | 2026-12-07 | 2027-01-31 |  |  |  |  |  |  |  |  |  |  |  |  |
| DAM3-C-ENV-SW-556 |  | Excavation for HDPE pipes | 7d | 2026-12-07 | 2026-12-14 | DAM3-C-ENV-SW-516 SS, DAM3-E-SA-EX-950, DAM3-E-SA-EX-960 |  |  |  | 12.5d | 0d | General Labour [112 h]; Equipment Operator [112 h]; Excavator [56 h]; Construction Cost [6309.39] | 6,309.39 |  | 05 | 04 | 12 |
| DAM3-C-ENV-SW-566 |  | Installation of HDPE Pipes | 10d | 2026-12-15 | 2026-12-26 | DAM3-C-ENV-SW-556 |  |  |  | 12.5d | 0d | Pipe Fitter [160 h]; Construction Cost [63093.9] | 63,093.94 |  | 05 | 04 | 12 |
| DAM3-C-ENV-SW-576 |  | Construction of Air valve chamber | 5d | 2026-12-27 | 2026-12-31 | DAM3-C-ENV-SW-566, DAM3-E-SA-EX-980, DAM3-E-SA-EX-990, DAM3-E-SA-EX-1010, DAM3-E-SA-EX-1020, DAM3-E-SA-EX-1030 |  |  |  | 12.5d | 0d | Mason [80 h]; Construction Cost [3786.75] | 3,786.75 |  | 05 | 04 | 12 |
| DAM3-C-ENV-SW-586 |  | Construction of Washout valve chamber | 5d | 2026-12-27 | 2026-12-31 | DAM3-C-ENV-SW-576 SS, DAM3-E-SA-EX-1000, DAM3-E-SA-EX-1040, DAM3-E-SA-EX-1050 |  |  |  | 12.5d | 0d | Mason [80 h]; Construction Cost [3247.85] | 3,247.85 |  | 05 | 04 | 12 |
| DAM3-C-ENV-SW-596 |  | Backfilling for HDPE pipes | 14d | 2027-01-02 | 2027-01-17 | DAM3-C-ENV-SW-586, S001-C-TC-ENV-F-1051 |  |  |  | 12.5d | 0d | General Labour [224 h]; Equipment Operator [224 h]; Mini Roller Compactor [112 h]; Construction Cost [6309.39] | 6,309.39 |  | 05 | 04 | 12 |
| DAM3-C-ENV-SW-606 |  | Installation of valves | 5d | 2027-01-18 | 2027-01-23 | DAM3-C-ENV-SW-596, DAM3-E-SA-EX-970, S001-C-TC-ENV-WS-11 |  |  |  | 12.5d | 0d | Plumber [80 h]; Construction Cost [84556] | 84,556 |  | 05 | 04 | 12 |
| DAM3-C-ENV-SW-616 |  | Main program system and controller for irrigation system | 7d | 2027-01-24 | 2027-01-31 | DAM3-C-ENV-SW-606, DAM3-E-ST-E-0260 |  |  |  | 12.5d | 0d | Plumber [112 h]; Construction Cost [100118]; Electrician [112 h] | 100,118.45 |  | 05 | 04 | 12 |

| ID | WBS | Activity | Duration | Start | Finish | Predecessors | Complete | Planned start | Planned finish | Total float | Free float | Resources | Cost | Actual cost | Phasing Code Category | Discipline | Project component code | Zone # | 00 Activity ID | AMH Tender Act. ID | Tender Original Duration | Remarks |
| --- | --- | --- | --- | --- | --- | --- | --- | --- | --- | --- | --- | --- | --- | --- | --- | --- | --- | --- | --- | --- | --- | --- |
|  | 3 | **EXTERNAL WORKS** |  | 2026-07-01 | 2027-02-27 |  |  |  |  |  |  |  |  |  |  |  |  |  |  |  |  |  |
|  | 1 | **MECHANICAL** |  | 2026-07-01 | 2026-12-14 |  |  |  |  |  |  |  |  |  |  |  |  |  |  |  |  |  |
| DAM3-C-ENV-M-1371 |  | Installation of GRP Tanks | 10d | 2026-08-08 A | 2026-10-08 A | DAM3-P-ST-M-410, DAM3-C-GRP-S-0108, DAM3-E-SA-M-700, DAM3-E-SA-M-710, DAM3-E-SA-M-720, DAM3-P-ST-M-410 FF | 100% | 2026-12-12 | 2026-12-23 |  |  | Pipe Fitter [160 h]; Plumber [160 h]; Construction Cost [585840] | 585,839.88 | 585,839.88 | 05 | 04 | 12 |  |  |  |  |  |
| DAM3-C-ENV-M-1301 |  | Installation of Fire Fighting Pump | 4d | 2026-09-22 A | 2026-09-22 A | DAM3-P-ST-M-380, DAM3-C-ENV-M-1341, DAM3-P-ST-M-380 FF | 100% | 2026-12-27 | 2026-12-31 |  |  | Pipe Fitter [64 h]; Equipment Operator [64 h]; Mobile Crane [32 h]; Construction Cost [345880] | 345,880.31 | 345,880.31 | 05 | 04 | 12 | 1 |  |  |  |  |
| DAM3-C-ENV-M-1341 |  | Installation of Booster Pump | 5d | 2026-10-07 A | 2026-10-07 A | DAM3-P-ST-M-400, DAM3-C-PR-S-178 | 100% | 2026-12-10 | 2026-12-15 |  |  | Plumber [80 h]; Mobile Crane [40 h]; Equipment Operator [80 h]; Construction Cost [38967.3] | 38,967.27 | 38,967.27 | 05 | 04 | 12 | 1 |  |  |  |  |
| DAM3-C-ENV-M-1311 |  | CO2 fire extinguisher | 1d | 2026-12-07 | 2026-12-07 | DAM3-C-ENV-M-1301 |  |  |  | 61.5d | 0d | Plumber [16 h]; Construction Cost [217.29] | 217.29 |  | 05 | 04 | 12 | 1 |  |  |  |  |
| DAM3-C-ENV-M-1361 |  | Powder fire extinguisher | 1d | 2026-12-08 | 2026-12-08 | DAM3-C-ENV-M-1311 |  |  |  | 61.5d | 0d | Pipe Fitter [16 h]; Construction Cost [188.33] | 188.33 |  | 05 | 04 | 12 | 1 |  |  |  |  |
| DAM3-C-ENV-M-1381 |  | Valves for GRP Tank | 3d | 2026-12-08 | 2026-12-12 | DAM3-C-ENV-M-1371, DAM3-C-B7-M-370 |  |  |  | 64.4d | 0d | Plumber [48 h]; Construction Cost [58584] | 58,583.98 |  | 05 | 04 | 12 |  |  |  |  |  |
| DAM3-C-ENV-M-1351 |  | Valves for Water Supply Pump | 2d | 2026-12-09 | 2026-12-10 | DAM3-C-ENV-E-176 |  |  |  | 58.5d | 7d | Plumber [32 h]; Construction Cost [4329.7] | 4,329.7 |  | 05 | 04 | 12 |  |  |  |  |  |
| DAM3-C-ENV-M-1391 |  | Access Ladder for GRP Tank | 2d | 2026-12-12 | 2026-12-14 | DAM3-C-ENV-M-1381 |  |  |  | 64.4d | 62.4d | Plumber [32 h]; Construction Cost [58584] | 58,583.98 |  | 05 | 04 | 12 |  |  |  |  |  |
|  | 1 | **GRP Tank Foundation** |  | 2026-07-27 | 2026-08-27 |  |  |  |  |  |  |  |  |  |  |  |  |  |  |  |  |  |
| DAM3-C-GRP-S-0101 |  | Excavation for Foundation | 4d | 2026-07-27 A | 2026-07-27 A | DAM3-C-PR-S-108, DAM3-E-SA-C-880, DAM3-E-SA-R-930, DAM3-E-SA-R-940 | 100% | 2026-12-23 | 2026-12-27 |  |  | General Labour [64 h]; Truck [32 h]; Excavator [32 h]; Mini Roller Compactor [32 h]; Construction Cost [9001.87] | 9,001.87 | 9,001.87 | 05 | 07 | 12 | 1 | H1.C.K1.00.SW.F.1010 | PH1-MHR-ST-640 | 12 |  |
| DAM3-C-GRP-S-0102 |  | Vapour Barrier for Foundation | 2d | 2026-08-06 A | 2026-08-06 A | DAM3-C-GRP-S-0101 | 100% | 2026-12-29 | 2026-12-30 |  |  | General Labour [32 h]; Construction Cost [9001.87] | 9,001.87 | 9,001.87 | 05 | 07 | 12 | 1 | H1.C.K1.00.SW.F.1040 | PH1-MHR-ST-1080 | 15 |  |
| DAM3-C-GRP-S-0103 |  | Lean Concrete Below Foundation | 2d | 2026-08-06 A | 2026-08-06 A | DAM3-C-GRP-S-0102 | 100% | 2026-12-31 | 2027-01-02 |  |  | Mason [32 h]; Construction Cost [18003.8] | 18,003.75 | 18,003.75 | 05 | 07 | 12 | 1 | H1.C.K1.00.SW.F.1030 | PH1-MHR-ST-1020 | 10 |  |
| DAM3-C-GRP-S-0104 |  | Rebar for Foundation | 4d | 2026-08-11 A | 2026-08-16 A | DAM3-C-GRP-S-0103 | 100% | 2027-01-02 | 2027-01-05 |  |  | Steel Fixer [64 h]; Construction Cost [36007.5] | 36,007.49 | 36,007.49 | 05 | 07 | 12 | 1 |  |  |  |  |
| DAM3-C-GRP-S-0105 |  | Formwork for Foundation | 4d | 2026-08-12 A | 2026-08-23 A | DAM3-C-GRP-S-0104 | 100% | 2027-01-06 | 2027-01-10 |  |  | Carperter [64 h]; Construction Cost [18003.8] | 18,003.75 | 18,003.75 | 05 | 07 | 12 | 1 |  |  |  |  |
| DAM3-C-GRP-S-0106 |  | Pouring Concrete for Foundation | 1d | 2026-08-18 A | 2026-08-23 A | DAM3-C-GRP-S-0105 | 100% | 2026-12-06 | 2026-12-07 |  |  | Carperter [16 h]; Mason [16 h]; Steel Fixer [16 h]; Concrete Mixer [8 h]; Construction Cost [63013.1] | 63,013.11 | 63,013.11 | 05 | 07 | 12 | 1 | H1.C.K1.00.RC.F.1010 | PH1-MHR-ST-1030 | 21 |  |
| DAM3-C-GRP-S-0107 |  | Damp proof /Bitumin paint on Foundation | 2d | 2026-08-24 A | 2026-08-25 A | DAM3-C-GRP-S-0106 | 100% | 2026-12-10 | 2026-12-13 |  |  | Painter [32 h]; Construction Cost [9001.87] | 9,001.87 | 9,001.87 | 05 | 07 | 12 | 1 | H1.C.K1.00.SW.F.1050 | PH1-MHR-ST-1080 | 15 |  |
| DAM3-C-GRP-S-0108 |  | Backfilling / Compaction Around Foundation | 7d | 2026-08-26 A | 2026-08-27 A | DAM3-C-GRP-S-0107 | 100% | 2026-12-13 | 2026-12-21 |  |  | General Labour [112 h]; Truck [56 h]; Mini Roller Compactor [56 h]; Wheel Loader [56 h]; Construction Cost [18003.8] | 18,003.75 | 18,003.75 | 05 | 07 | 12 | 1 | H1.C.K1.00.SW.F.1060 | PH1-MHR-ST-645 | 15 |  |
|  | 2 | **Pump Shed** |  | 2026-07-01 | 2026-12-12 |  |  |  |  |  |  |  |  |  |  |  |  |  |  |  |  |  |
| DAM3-C-PR-S-108 |  | Excavation for Footings | 4d | 2026-07-01 A | 2026-07-02 A | DAM3-C-ENV-SW-486, DAM3-E-SA-C-890 | 100% | 2026-12-15 | 2026-12-19 |  |  | General Labour [64 h]; Truck [32 h]; Excavator [32 h]; Mini Roller Compactor [32 h]; Construction Cost [649.57] | 649.57 | 649.57 | 05 | 07 | 12 | 1 | H1.C.K1.00.SW.F.1010 | PH1-MHR-ST-640 | 12 |  |
| DAM3-C-PR-S-138 |  | Lean Concrete Below Footings | 2d | 2026-07-23 A | 2026-07-23 A | DAM3-C-PR-S-308 | 100% | 2026-12-22 | 2026-12-23 |  |  | Mason [32 h]; Construction Cost [649.57] | 649.57 | 649.57 | 05 | 07 | 12 | 1 | H1.C.K1.00.SW.F.1030 | PH1-MHR-ST-1020 | 10 |  |
| DAM3-C-PR-S-308 |  | Vapour Barrier for Footings | 2d | 2026-07-23 A | 2026-07-23 A | DAM3-C-PR-S-108 | 100% | 2026-12-20 | 2026-12-21 |  |  | General Labour [32 h]; Construction Cost [649.57] | 649.57 | 649.57 | 05 | 07 | 12 | 1 | H1.C.K1.00.SW.F.1040 | PH1-MHR-ST-1080 | 15 |  |
| DAM3-C-PR-S-198 |  | Rebar for Footings | 4d | 2026-07-25 A | 2026-07-25 A | DAM3-C-PR-S-138 | 100% | 2026-12-21 | 2026-12-24 |  |  | Steel Fixer [64 h]; Construction Cost [1299.14] | 1,299.14 | 1,299.14 | 05 | 07 | 12 | 1 |  |  |  |  |
| DAM3-C-PR-S-208 |  | Formwork for Footings | 4d | 2026-07-25 A | 2026-07-25 A | DAM3-C-PR-S-198 | 100% | 2026-12-26 | 2026-12-29 |  |  | Carperter [64 h]; Construction Cost [649.57] | 649.57 | 649.57 | 05 | 07 | 12 | 1 |  |  |  |  |
| DAM3-C-PR-S-148 |  | Pouring Concrete for Footings | 1d | 2026-07-26 A | 2026-07-26 A | DAM3-C-PR-S-208 | 100% | 2026-12-30 | 2026-12-30 |  |  | Carperter [16 h]; Mason [16 h]; Steel Fixer [16 h]; Concrete Mixer [32 h]; Construction Cost [5846.13] | 5,846.13 | 5,846.13 | 05 | 07 | 12 | 1 | H1.C.K1.00.RC.F.1010 | PH1-MHR-ST-1030 | 21 |  |
| DAM3-C-PR-S-298 |  | Damp proof /Bitumin paint on Footing Sides | 2d | 2026-07-28 A | 2026-07-28 A | DAM3-C-PR-S-148 | 100% | 2026-12-23 | 2026-12-24 |  |  | Painter [32 h]; Construction Cost [649.57] | 649.57 | 649.57 | 05 | 07 | 12 | 1 | H1.C.K1.00.SW.F.1050 | PH1-MHR-ST-1080 | 15 |  |
| DAM3-C-PR-S-378 |  | Backfilling / Compaction Around Footings to Bottom of Grade Beams | 5d | 2026-07-29 A | 2026-08-03 A | DAM3-C-PR-S-298 | 100% | 2026-12-28 | 2027-01-02 |  |  | General Labour [80 h]; Truck [40 h]; Mini Roller Compactor [40 h]; Wheel Loader [40 h]; Construction Cost [1299.14] | 1,299.14 | 1,299.14 | 05 | 07 | 12 | 1 | H1.C.K1.00.SW.F.1060 | PH1-MHR-ST-645 | 15 |  |
| DAM3-C-PR-S-158 |  | Lean Concrete Below Grade Beams | 2d | 2026-08-04 A | 2026-08-04 A | DAM3-C-PR-S-328 | 100% | 2026-12-29 | 2026-12-30 |  |  | Mason [32 h]; Construction Cost [649.57] | 649.57 | 649.57 | 05 | 07 | 12 | 1 | H1.C.K1.00.SW.F.1130 | PH1-MHR-ST-1020 | 10 |  |
| DAM3-C-PR-S-328 |  | Vapour barrier for Grade Beams | 2d | 2026-08-04 A | 2026-08-04 A | DAM3-C-PR-S-378 | 100% | 2026-12-27 | 2026-12-28 |  |  | General Labour [32 h]; Construction Cost [649.57] | 649.57 | 649.57 | 05 | 07 | 12 | 1 | H1.C.K1.00.SW.F.1040 | PH1-MHR-ST-1080 | 15 |  |
| DAM3-C-PR-S-218 |  | Rebar for Grade Beams | 2d | 2026-08-15 A | 2026-08-15 A | DAM3-C-PR-S-158 | 100% | 2027-01-07 | 2027-01-09 |  |  | Steel Fixer [32 h]; Construction Cost [1299.14] | 1,299.14 | 1,299.14 | 05 | 07 | 12 | 1 |  |  |  |  |
| DAM3-C-PR-S-228 |  | Formwork for Grade Beams | 2d | 2026-08-16 A | 2026-08-17 A | DAM3-C-PR-S-218 | 100% | 2027-01-10 | 2027-01-11 |  |  | Carperter [32 h]; Construction Cost [649.57] | 649.57 | 649.57 | 05 | 07 | 12 | 1 |  |  |  |  |
| DAM3-C-PR-S-188 |  | Pedestal including anchor bolts | 1d | 2026-08-17 A | 2026-08-17 A | DAM3-C-PR-S-228 SS | 100% | 2026-12-03 | 2026-12-03 |  |  | Mason [16 h]; Structural Steel Fixer [16 h]; Construction Cost [1299.14] | 1,299.14 | 1,299.14 | 05 | 07 | 12 | 1 |  |  |  |  |
| DAM3-C-PR-S-168 |  | Pouring Concrete for Grade Beams | 1d | 2026-08-18 A | 2026-08-18 A | DAM3-C-PR-S-228 | 100% | 2026-12-03 | 2026-12-03 |  |  | Mason [16 h]; Carperter [16 h]; Concrete Mixer [32 h]; Steel Fixer [16 h]; Construction Cost [3247.85] | 3,247.85 | 3,247.85 | 05 | 07 | 12 | 1 | H1.C.K1.00.RC.F.1110 | PH1-MHR-ST-1030 | 21 |  |
| DAM3-C-PR-S-338 |  | Damp proof /Bitumin paint on Grade Beams | 2d | 2026-08-20 A | 2026-08-22 A | DAM3-C-PR-S-168 | 100% | 2026-12-05 | 2026-12-07 |  |  | Painter [32 h]; Construction Cost [649.57] | 649.57 | 649.57 | 05 | 07 | 12 | 1 | H1.C.K1.00.SW.F.1050 | PH1-MHR-ST-1080 | 15 |  |
| DAM3-C-PR-S-388 |  | Backfilling / Compaction for Slab on Grade | 5d | 2026-08-23 A | 2026-08-24 A | DAM3-C-PR-S-338 | 100% | 2026-12-07 | 2026-12-13 |  |  | Mini Roller Compactor [40 h]; General Labour [80 h]; Wheel Loader [40 h]; Construction Cost [1299.14] | 1,299.14 | 1,299.14 | 05 | 07 | 12 | 1 |  |  |  |  |
| DAM3-C-PR-S-318 |  | Anti Termite Treatment below Ground Slab | 1d | 2026-08-24 A | 2026-08-24 A | DAM3-C-PR-S-388 | 100% | 2026-12-05 | 2026-12-06 |  |  | General Labour [16 h]; Construction Cost [649.57] | 649.57 | 649.57 | 05 | 07 | 12 | 1 | H1.C.A1.06.SW.F.1220 | PH1-MHR-ST-645 | 15 |  |
| DAM3-C-PR-S-348 |  | Vapour barrier for below Ground Slab | 2d | 2026-08-24 A | 2026-08-24 A | DAM3-C-PR-S-318 | 100% | 2026-12-06 | 2026-12-08 |  |  | General Labour [32 h]; Construction Cost [649.57] | 649.57 | 649.57 | 05 | 07 | 12 | 1 |  |  |  |  |
| DAM3-C-PR-S-268 |  | Rebar for Ground Slab | 4d | 2026-08-25 A | 2026-08-26 A | DAM3-C-PR-S-348 | 100% | 2026-12-08 | 2026-12-13 |  |  | Steel Fixer [64 h]; Construction Cost [12070.6] | 12,070.63 | 12,070.63 | 05 | 07 | 12 | 1 |  |  |  |  |
| DAM3-C-PR-S-278 |  | Formwork for Ground Slab | 4d | 2026-08-26 A | 2026-08-26 A | DAM3-C-PR-S-268 | 100% | 2026-12-07 | 2026-12-12 |  |  | Carperter [64 h]; Construction Cost [8263.6] | 8,263.6 | 8,263.6 | 05 | 07 | 12 | 1 |  |  |  |  |
| DAM3-C-PR-S-178 |  | Pouring Concrete for Ground Slab | 1d | 2026-08-27 A | 2026-08-27 A | DAM3-C-PR-S-278 | 100% | 2026-12-12 | 2026-12-13 |  |  | Mason [16 h]; Carperter [16 h]; Steel Fixer [16 h]; Concrete Mixer [32 h]; Construction Cost [20334.2] | 20,334.24 | 20,334.24 | 05 | 07 | 12 | 1 | H1.C.A1.06.RC.G.1210 | PH1-MHR-ST-496 | 24 |  |
| DAM3-C-PR-S-128 |  | Installation of Columns | 3d | 2026-08-30 A | 2026-08-30 A | DAM3-C-PR-S-188, DAM3-C-PR-S-288 | 100% | 2026-12-16 | 2026-12-20 |  |  | Structural Steel Fixer [48 h]; Mobile Crane [24 h]; Construction Cost [7794.85] | 7,794.85 | 7,794.85 | 05 | 07 | 12 |  |  |  |  | 3 |
| DAM3-C-PR-S-358 |  | Installation of Raft & Purlins | 4d | 2026-08-30 A | 2026-08-30 A | DAM3-C-PR-S-128 | 100% | 2026-12-20 | 2026-12-24 |  |  | Structural Steel Fixer [64 h]; Mobile Crane [32 h]; Construction Cost [11042.7] | 11,042.69 | 11,042.69 | 05 | 07 | 12 |  |  |  |  | 3 |
| DAM3-C-PR-S-368 |  | Installation of Roof Sheet | 2d | 2026-08-31 A | 2026-08-31 A | DAM3-C-PR-S-358 | 100% | 2026-12-24 | 2026-12-27 |  |  | Structural Steel Fixer [32 h]; Mobile Crane [16 h]; Construction Cost [19487.1] | 19,487.12 | 19,487.12 | 05 | 07 | 12 |  |  |  |  | 3 |
| DAM3-C-PR-S-288 |  | Concrete Pad | 5d | 2026-12-07 | 2026-12-12 | DAM3-C-PR-S-178 |  |  |  | 65.5d | 0d | Mason [80 h]; Construction Cost [1299.14] | 1,299.14 |  | 05 | 07 | 12 |  |  |  |  |  |

| ID | WBS | Activity | Duration | Start | Finish | Predecessors | Total float | Free float | Resources | Cost | Zone # | Phasing Code Category | Discipline | Project component code | 00 Activity ID | AMH Tender Act. ID | Tender Original Duration |
| --- | --- | --- | --- | --- | --- | --- | --- | --- | --- | --- | --- | --- | --- | --- | --- | --- | --- |
|  | 6 | **ELECTRICAL** |  | 2026-12-07 | 2026-12-26 |  |  |  |  |  |  |  |  |  |  |  |  |
| DAM3-C-ENV-E-176 |  | Installation of Main MCC | 2d | 2026-12-07 | 2026-12-08 | DAM3-C-ENV-M-1341 | 51.5d | 0d | Electrician [32 h]; Construction Cost [13498.4] | 13,498.43 | 1 | 05 | 05 | 12 |  |  |  |
| DAM3-C-ENV-E-236 |  | Installation of panel boards | 2d | 2026-12-07 | 2026-12-08 | DAM3-C-ENV-M-1301, DAM3-P-ST-E-270 | 55.5d | 0d | Electrician [32 h]; Construction Cost [5953.91] | 5,953.91 | 1 | 05 | 05 | 12 |  |  |  |
| DAM3-C-ENV-E-1321 |  | Installation of wiring devices | 5d | 2026-12-09 | 2026-12-14 | DAM3-C-ENV-M-1301, DAM3-C-ENV-M-1361 | 61.5d | 0d | Electrician [80 h]; Construction Cost [5632.31] | 5,632.31 | 1 | 05 | 05 | 12 |  |  |  |
| DAM3-C-ENV-E-1341 |  | Installation of Cable tray | 5d | 2026-12-09 | 2026-12-14 | DAM3-C-ENV-E-236, DAM3-E-ST-E-210 | 55.5d | 0d | Electrician [80 h]; Construction Cost [3563.73] | 3,563.73 |  | 05 | 05 | 12 |  |  |  |
| DAM3-C-ENV-E-186 |  | Installation of Earthing and Grounding | 3d | 2026-12-09 | 2026-12-12 | DAM3-C-ENV-E-176, DAM3-E-SA-E-1160 | 51.5d | 0d | Electrician [80 h]; Construction Cost [1399.38] | 1,399.38 | 1 | 05 | 05 | 12 | H1.C.K1.00.EM.G.2040 |  |  |
| DAM3-C-ENV-E-206 |  | Installation of Conduites for Lighting Fixture | 4d | 2026-12-13 | 2026-12-16 | DAM3-C-ENV-E-186, DAM3-E-SA-E-1130, DAM3-E-SA-E-1140, DAM3-E-SA-E-1170 | 51.5d | 0d | Electrician [64 h]; Construction Cost [798.2] | 798.2 | 1 | 05 | 05 | 12 | H1.C.K1.00.EM.G.2030 |  |  |
| DAM3-C-ENV-E-216 |  | Installation of LV Cables | 5d | 2026-12-15 | 2026-12-20 | DAM3-C-ENV-E-176, DAM3-C-ENV-E-1341 | 55.5d | 0d | Electrician [80 h]; Construction Cost [7709.71] | 7,709.71 |  | 05 | 05 | 12 |  |  |  |
| DAM3-C-ENV-E-226 |  | Installation of Wires | 2d | 2026-12-17 | 2026-12-19 | DAM3-C-ENV-E-206 | 51.5d | 0d | Electrician [32 h]; Construction Cost [1596.4] | 1,596.4 |  | 05 | 05 | 12 |  |  |  |
| DAM3-C-ENV-E-196 |  | Installation of Lighting fixtures | 2d | 2026-12-20 | 2026-12-21 | DAM3-C-ENV-E-226, DAM3-C-ENV-M-1351, DAM3-E-SA-E-1150, DAM3-P-ST-E-280 | 51.5d | 0d | Electrician [32 h]; Construction Cost [7183.81] | 7,183.81 | 1 | 05 | 05 | 12 | H1.C.K1.00.EM.G.3010 |  |  |
| DAM3-C-ENV-E-1331 |  | Installation of Programmable Logis Controller | 4d | 2026-12-22 | 2026-12-26 | DAM3-C-ENV-E-196, DAM3-E-SA-E-1180, DAM3-E-ST-E-0270 | 51.5d | 0d | Electrician [112 h]; Construction Cost [189531] | 189,531.43 | 1 | 05 | 05 | 12 | H1.C.K1.00.EM.G.3010 |  |  |
|  | 4 | **EXTERNAL ELECTRICAL WORKS** |  | 2026-11-21 | 2027-02-04 |  |  |  |  |  |  |  |  |  |  |  |  |
| DAM3-C-ENV-E-400 |  | Installation of UPVC Pipe | 5d | 2026-11-21 | 2026-11-25 | DAM3-C-ENV-WS-786 SS | 9.5d |  | Electrician [80 h]; Construction Cost [76356.2] | 76,356.21 |  | 05 | 05 | 12 |  |  |  |
| DAM3-C-ENV-E-410 |  | Construction of Concrete encased duct bank | 8d | 2026-12-07 | 2026-12-16 | DAM3-C-ENV-E-400, DAM3-P-ST-M-510, DAM3-P-ST-E-370, DAM3-C-B3-M-860 | 0d |  | Electrician [160 h]; Construction Cost [687206] | 687,205.97 |  | 05 | 05 | 12 |  |  |  |
| DAM3-C-ENV-E-420 |  | Installation of Sleeves for lighting poles | 5d | 2026-12-16 | 2026-12-22 | DAM3-C-ENV-E-410 | 0d |  | Electrician [80 h]; Construction Cost [19588.8] | 19,588.78 |  | 05 | 05 | 12 |  |  |  |
| DAM3-C-ENV-E-390 |  | Installation of Telecom manhole | 4d | 2026-12-22 | 2026-12-27 | DAM3-C-ENV-E-420 | 0d |  | Electrician [160 h]; Construction Cost [120350] | 120,350.16 |  | 05 | 05 | 12 |  |  |  |
| DAM3-C-ENV-E-450 |  | Foundation for Lighting poles | 5d | 2026-12-27 | 2027-01-02 | DAM3-C-ENV-E-390 | 0d |  | Excavator [40 h]; Electrician [80 h]; Construction Cost [19588.8] | 19,588.78 | 1 | 05 | 05 | 12 |  |  |  |
| DAM3-C-ENV-E-440 |  | Installation of Lighting poles | 5d | 2027-01-02 | 2027-01-07 | DAM3-C-ENV-E-450, DAM3-P-ST-E-260 | 0d |  | Mobile Crane [56 h]; Excavator [56 h]; Electrician [112 h]; Construction Cost [156710] | 156,710.21 | 1 | 05 | 05 | 12 |  |  |  |
| DAM3-C-ENV-E-430 |  | Installation of Lighting Fixture | 5d | 2027-01-07 | 2027-01-13 | DAM3-C-ENV-E-440 | 0d |  | Mobile Crane [40 h]; Electrician [80 h]; Construction Cost [39177.6] | 39,177.55 | 1 | 05 | 05 | 12 |  |  |  |
| DAM3-C-ENV-E-380 |  | Installation of LV Cables | 7d | 2027-01-13 | 2027-01-21 | DAM3-C-ENV-E-430 | 12d | 0d | Electrician [112 h]; Construction Cost [98914.9] | 98,914.91 |  | 05 | 05 | 12 |  |  |  |
| DAM3-C-ENV-E-460 |  | Electrical Manhole | 7d | 2027-01-21 | 2027-01-30 | DAM3-C-ENV-E-380 | 12d | 0d | Electrician [112 h]; Construction Cost [253329] | 253,329.4 | 1 | 05 | 05 | 12 |  |  |  |
| DAM3-C-ENV-E-470 |  | Installation of Earthing and Grounding | 5d | 2027-01-30 | 2027-02-04 | DAM3-C-ENV-E-460 | 12d | 0d | Electrician [80 h]; Construction Cost [19643.5] | 19,643.55 | 1 | 05 | 05 | 12 | H1.C.K1.00.EM.G.2040 |  |  |
| DAM3-C-ENV-E-480 |  | Installation of Street Lighting Feeder pillars & KWH meter | 5d | 2027-01-30 | 2027-02-04 | DAM3-C-ENV-E-470 SS | 18.7d | 11.5d | Electrician [80 h]; Construction Cost [220842] | 220,842.4 |  | 05 | 05 | 12 |  |  |  |
|  | 3 | **FENCES AND GATES** |  | 2027-01-13 | 2027-02-27 |  |  |  |  |  |  |  |  |  |  |  |  |
| DAM3-C-ENV-S-1374 |  | Excavation for Fence | 2d | 2027-01-13 | 2027-01-16 | DAM3-C-ENV-E-430 | 0d |  | General Labour [112 h]; Equipment Operator [112 h]; Truck [56 h]; Excavator [56 h]; Mini Roller Compactor [56 h]; Construction Cost [597.56] | 597.56 | 1 | 05 | 07 | 12 | H1.C.K1.00.SW.F.1010 | PH1-MHR-ST-640 | 12 |
| DAM3-C-ENV-S-1354 |  | Vapour Barrier for Fence | 4d | 2027-01-16 | 2027-01-20 | DAM3-C-ENV-S-1374 | 1d | 0d | General Labour [64 h]; Construction Cost [298.78] | 298.78 | 1 | 05 | 07 | 12 | H1.C.K1.00.SW.F.1040 | PH1-MHR-ST-1080 | 15 |
| DAM3-C-ENV-S-1274 |  | Lean Concrete Below Fence | 4d | 2027-01-20 | 2027-01-25 | DAM3-C-ENV-S-1354 | 1d | 0d | Mason [64 h]; Construction Cost [597.56] | 597.56 | 1 | 05 | 07 | 12 | H1.C.K1.00.SW.F.1030 | PH1-MHR-ST-1020 | 10 |
| DAM3-C-ENV-S-1304 |  | Rebar for Footings | 7d | 2027-01-25 | 2027-02-02 | DAM3-C-ENV-S-1274 | 1d | 0d | Steel Fixer [112 h]; Construction Cost [1195.12] | 1,195.12 | 1 | 05 | 07 | 12 |  |  |  |
| DAM3-C-ENV-S-1314 |  | Formwork for Footings | 4d | 2027-02-02 | 2027-02-07 | DAM3-C-ENV-S-1304 | 1d | 0d | Carperter [64 h]; Construction Cost [597.56] | 597.56 | 1 | 05 | 07 | 12 |  |  |  |
| DAM3-C-ENV-S-1284 |  | Pouring Concrete for Footings | 2d | 2027-02-07 | 2027-02-09 | DAM3-C-ENV-S-1314 | 1d | 0d | Carperter [32 h]; Mason [32 h]; Steel Fixer [32 h]; Concrete Mixer [16 h]; Equipment Operator [32 h]; Construction Cost [1792.67] | 1,792.67 | 1 | 05 | 07 | 12 | H1.C.K1.00.RC.F.1010 | PH1-MHR-ST-1030 | 21 |
| DAM3-C-ENV-S-1344 |  | Damp proof /Bitumin paint on Footing Sides | 2d | 2027-02-09 | 2027-02-11 | DAM3-C-ENV-S-1284 | 1d | 0d | Painter [32 h]; Construction Cost [298.78] | 298.78 | 1 | 05 | 07 | 12 | H1.C.K1.00.SW.F.1050 | PH1-MHR-ST-1080 | 15 |
| DAM3-C-ENV-S-1364 |  | Backfilling / Compaction Around Footings | 4d | 2027-02-11 | 2027-02-16 | DAM3-C-ENV-S-1344 | 1d | 0d | General Labour [112 h]; Truck [56 h]; Mini Roller Compactor [56 h]; Equipment Operator [112 h]; Wheel Loader [56 h]; Construction Cost [597.56] | 597.56 | 1 | 05 | 07 | 12 | H1.C.K1.00.SW.F.1060 | PH1-MHR-ST-645 | 15 |
| DAM3-C-ENV-S-1334 |  | Installation of base plate | 2d | 2027-02-16 | 2027-02-18 | DAM3-C-ENV-S-1364, DAM3-E-ST-A-1750 | 1d | 0d | Carperter [80 h]; Construction Cost [1195.12] | 1,195.12 | 1 | 05 | 07 | 12 |  |  |  |
| DAM3-C-ENV-S-1324 |  | Installation of steel members | 2d | 2027-02-18 | 2027-02-21 | DAM3-C-ENV-S-1334 | 1d | 0d | Steel Fixer [112 h]; Construction Cost [2390.24] | 2,390.24 | 1 | 05 | 07 | 12 |  |  |  |
| DAM3-C-ENV-S-1294 |  | Installation of steel fence | 2d | 2027-02-21 | 2027-02-24 | DAM3-C-ENV-S-1324 | 1d | 0d | Mason [32 h]; Carperter [32 h]; Concrete Mixer [16 h]; Steel Fixer [32 h]; Equipment Operator [32 h]; Construction Cost [2390.24] | 2,390.24 | 1 | 05 | 07 | 12 | H1.C.K1.00.RC.F.1110 | PH1-MHR-ST-1030 | 21 |
| DAM3-C-ENV-S-1384 |  | Installation of steel gates | 2d | 2027-02-24 | 2027-02-27 | DAM3-C-ENV-S-1294 | 1d | 0d | Mason [32 h]; Carperter [32 h]; Concrete Mixer [16 h]; Steel Fixer [32 h]; Equipment Operator [32 h]; Construction Cost [2343.91] | 2,343.91 | 1 | 05 | 07 | 12 | H1.C.K1.00.RC.F.1110 | PH1-MHR-ST-1030 | 21 |

| ID | WBS | Activity | Duration | Start | Finish | Predecessors | Complete | Planned start | Planned finish | Total float | Free float | Resources | Cost | Actual cost | Zone # | Phasing Code Category | Discipline | Project component code |
| --- | --- | --- | --- | --- | --- | --- | --- | --- | --- | --- | --- | --- | --- | --- | --- | --- | --- | --- |
|  | 2 | **ROAD WORKS** |  | 2027-01-16 | 2027-02-25 |  |  |  |  |  |  |  |  |  |  |  |  |  |
| DAM3-C-ENV-R-1390 |  | SubGrade Preparation & Compaction | 5d | 2027-01-16 | 2027-01-21 | DAM3-E-MT-EX-2050, DAM3-C-ENV-S-1374 |  |  |  | 0d |  | General Labour [112 h]; Equipment Operator [112 h]; Motor Grader [56 h]; Roller Compactor [56 h]; Construction Cost [319796] | 319,796.23 |  | 1 | 05 | 07 | 12 |
| DAM3-C-ENV-R-1400 |  | Aggregate Base Course Layer | 5d | 2027-01-21 | 2027-01-27 | DAM3-E-SA-R-840, DAM3-P-ST-EX-80, DAM3-C-ENV-R-1390 |  |  |  | 0d |  | General Labour [32 h]; Mini Roller Compactor [16 h]; Equipment Operator [32 h]; Construction Cost [262382] | 262,382.32 |  | 1 | 05 | 07 | 12 |
| DAM3-C-ENV-R-1460 |  | Curb Stones | 4d | 2027-01-27 | 2027-02-01 | DAM3-E-SA-R-790, DAM3-E-SA-R-800, DAM3-E-SA-R-810, DAM3-E-SA-R-820, DAM3-E-SA-R-850, DAM3-P-ST-EX-140, DAM3-C-ENV-R-1400 |  |  |  | 0d |  | Mason [224 h]; Construction Cost [291157] | 291,156.54 |  |  | 05 | 07 | 12 |
| DAM3-C-ENV-R-1480 |  | Interlock Tiles | 3d | 2027-02-01 | 2027-02-04 | DAM3-C-ENV-R-1460, DAM3-P-ST-EX-130 |  |  |  | 0d |  | Mason [224 h]; Construction Cost [475634] | 475,633.54 |  |  | 05 | 07 | 12 |
| DAM3-C-ENV-R-890 |  | Supply and install geotextile sheet | 2d | 2027-02-04 | 2027-02-07 | DAM3-C-ENV-R-1480 |  |  |  | 0d |  | General Labour [32 h]; Construction Cost [47639] | 47,639.01 |  |  | 05 | 07 | 12 |
| DAM3-C-ENV-R-1490 |  | Gravel Bedding | 2d | 2027-02-07 | 2027-02-09 | DAM3-E-SA-R-880, DAM3-E-SA-R-890, DAM3-E-SA-R-910, DAM3-P-ST-EX-150, DAM3-C-ENV-R-890 |  |  |  | 0d |  | General Labour [32 h]; Mini Roller Compactor [24 h]; Truck [24 h]; Construction Cost [57375.4] | 57,375.45 |  | 1 | 05 | 07 | 12 |
| DAM3-C-ENV-R-1500 |  | Road Signs | 3d | 2027-02-09 | 2027-02-13 | DAM3-C-ENV-R-1490, DAM3-E-SA-R-860, DAM3-P-ST-EX-110 |  |  |  | 0d |  | Mason [80 h]; Construction Cost [103946] | 103,945.8 |  |  | 05 | 07 | 12 |
| DAM3-C-ENV-R-1450 |  | Prime Coat | 1d | 2027-02-13 | 2027-02-14 | DAM3-C-ENV-R-1500 |  |  |  | 2d | 0d | General Labour [16 h]; Construction Cost [71708] | 71,708.03 |  |  | 05 | 07 | 12 |
| DAM3-C-ENV-R-1410 |  | Asphalt Concrete Base Course Layer | 2d | 2027-02-14 | 2027-02-16 | DAM3-C-ENV-R-1450 SS+1d |  |  |  | 2d | 0d | General Labour [32 h]; Paver [16 h]; Equipment Operator [32 h]; Construction Cost [645372] | 645,372.33 |  | 1 | 05 | 07 | 12 |
| DAM3-C-ENV-R-1470 |  | Tack Coat | 1d | 2027-02-16 | 2027-02-17 | DAM3-C-ENV-R-1410 |  |  |  | 2d | 0d | General Labour [16 h]; Construction Cost [52885.1] | 52,885.08 |  |  | 05 | 07 | 12 |
| DAM3-C-ENV-R-1420 |  | Asphalt Concrete Wearing Course Layer | 2d | 2027-02-17 | 2027-02-20 | DAM3-C-ENV-R-1470 |  |  |  | 2d | 0d | General Labour [32 h]; Paver [16 h]; Equipment Operator [32 h]; Construction Cost [475966] | 475,965.66 |  | 1 | 05 | 07 | 12 |
| DAM3-C-ENV-R-1430 |  | Retroreflective Thermoplastic White Traffic lines | 2d | 2027-02-20 | 2027-02-23 | DAM3-C-ENV-R-1420, DAM3-E-SA-R-830, DAM3-E-SA-R-870, DAM3-P-ST-EX-100 |  |  |  | 2d | 0d | General Labour [32 h]; Construction Cost [37884.8] | 37,884.84 |  | 1 | 05 | 07 | 12 |
| DAM3-C-ENV-R-1440 |  | Installation of Concrete wheel bumper | 2d | 2027-02-23 | 2027-02-25 | DAM3-C-ENV-R-1430, DAM3-P-ST-EX-90 |  |  |  | 2d | 0d | Mason [64 h]; Construction Cost [32019.8] | 32,019.76 |  | 1 | 05 | 07 | 12 |
|  | 5 | **LANDSCAPING** |  | 2027-02-09 | 2027-02-24 |  |  |  |  |  |  |  |  |  |  |  |  |  |
| DAM3-C-ENV-R-1510 |  | Planting of trees | 5d | 2027-02-09 | 2027-02-15 | DAM3-C-ENV-R-1490, DAM3-E-SA-R-900, DAM3-E-SA-R-920, DAM3-E-SA-R-950, DAM3-E-SA-R-960 |  |  |  | 3d | 0d | General Labour [80 h]; Mini Roller Compactor [40 h]; Truck [40 h]; Construction Cost [110132] | 110,131.54 |  | 1 | 05 | 07 | 12 |
| DAM3-C-ENV-R-1520 |  | Planting of shrubs | 7d | 2027-02-15 | 2027-02-24 | DAM3-C-ENV-R-1510 |  |  |  | 3d | 2d | General Labour [112 h]; Mini Roller Compactor [56 h]; Truck [56 h]; Construction Cost [53968] | 53,968.01 |  | 1 | 05 | 07 | 12 |
|  | 6 | **TESTING AND COMMISSIONING (10%)** |  | 2026-06-17 | 2027-02-24 |  |  |  |  |  |  |  |  |  |  |  |  |  |
|  | 3 | **TESTING AND COMMISSIONING 900 Sq.m-2** |  | 2026-06-28 | 2027-02-24 |  |  |  |  |  |  |  |  |  |  |  |  |  |
|  | 1 | **MECHANICAL** |  | 2026-06-28 | 2027-02-23 |  |  |  |  |  |  |  |  |  |  |  |  |  |
| P001-C-TC-M-3406 |  | Testing & Commissioning of Sewer & Drainage Pipes | 7d | 2026-06-28 A | 2026-10-08 A | DAM3-C-B6-M-510, DAM3-C-B5-M-1130, DAM3-C-B4-M-820, DAM3-C-B3-M-820, DAM3-C-B2-M-200, DAM3-C-B11-M-200 | 100% | 2026-07-25 | 2026-08-01 |  |  | Plumber [112 h]; Construction Cost [63346.6] | 63,346.56 | 63,346.56 |  | 06 | 04 | 12 |
| P001-C-TC-M-3416 |  | Testing and Commissioning of Electric Water Heater | 7d | 2026-12-09 | 2026-12-17 | DAM3-C-B6-M-490, DAM3-C-B5-M-1110, DAM3-C-B4-M-800, DAM3-C-B3-M-800, DAM3-C-B2-M-180 |  |  |  | 48.45d | 30.25d | Plumber [1440 h]; Construction Cost [2987.25] | 2,987.25 |  |  | 06 | 04 | 12 |
| P001-C-TC-M-3426 |  | Testing and Commissioning of Sanitary Fixtures | 7d | 2026-12-14 | 2026-12-22 | DAM3-C-B6-M-500, DAM3-C-B5-M-1120, DAM3-C-B4-M-810, DAM3-C-B3-M-810, DAM3-C-B2-M-190 |  |  |  | 49.45d | 34.25d | Plumber [112 h]; Construction Cost [32707.3] | 32,707.31 |  |  | 06 | 04 | 12 |
| P001-C-TC-M-3376 |  | Testing and Commissioning of Fire Fighting Pipes | 7d | 2027-01-18 | 2027-01-25 | DAM3-C-B6-M-610, DAM3-C-B5-M-1230, DAM3-C-B4-M-920, DAM3-C-B3-M-920, DAM3-C-B2-M-300 |  |  |  | 25.2d | 16d | Pipe Fitter [112 h]; Construction Cost [118857] | 118,857.05 |  |  | 06 | 04 | 12 |
| P001-C-TC-M-3396 |  | Testing & Commissioning of Water Supply Pipes | 7d | 2027-01-18 | 2027-01-25 | DAM3-C-B6-M-600, DAM3-C-B5-M-1220, DAM3-C-B4-M-910, DAM3-C-B3-M-910, DAM3-C-B2-M-290 |  |  |  | 22.2d | 14d | Plumber [112 h]; Construction Cost [38284] | 38,283.97 |  |  | 06 | 04 | 12 |
| P001-C-TC-M3446 |  | Testing and Commissioning of Exhaust Fan | 7d | 2027-01-20 | 2027-01-27 | DAM3-C-B6-M-440, DAM3-C-B5-M-1060, DAM3-C-B4-M-750, DAM3-C-B3-M-750, DAM3-C-B2-M-130 |  |  |  | 17.5d | 6d | AC Technician [112 h]; Construction Cost [13737.5] | 13,737.46 |  |  | 06 | 04 | 12 |
| P001-C-TC-M-3456 |  | Testing and Commissioning of Wall propeller type exhaust fans | 7d | 2027-01-25 | 2027-02-01 | DAM3-C-B6-M-470, DAM3-C-B5-M-1090, DAM3-C-B4-M-780, DAM3-C-B3-M-780, DAM3-C-B2-M-160 |  |  |  | 13.5d | 2d | AC Technician [112 h]; Construction Cost [76887.8] | 76,887.76 |  |  | 06 | 04 | 12 |
| P001-C-TC-M-3436 |  | Testing and Commissioning of HVAC Duct | 7d | 2027-01-27 | 2027-02-03 | DAM3-C-B6-M-450, DAM3-C-B5-M-1070, DAM3-C-B4-M-760, DAM3-C-B3-M-760, DAM3-C-B2-M-140 |  |  |  | 11.5d | 0d | AC Technician [112 h]; Construction Cost [245430] | 245,430.24 |  |  | 06 | 04 | 12 |
| P001-C-TC-M-3386 |  | Testing and Commissioning of Fire Hose Cabinet | 3d | 2027-02-20 | 2027-02-23 | DAM3-C-B6-M-630, DAM3-C-B5-M-1250, DAM3-C-B4-M-940, DAM3-C-B3-M-940, DAM3-C-B2-M-320, DAM3-C-B1-M-320, DAM3-C-B7-M-320, DAM3-C-B8-M-320, DAM3-C-B9-M-320, DAM3-C-B10-M-320, DAM3-C-B11-M-320 |  |  |  | 2.5d | 0d | Pipe Fitter [720 h]; Construction Cost [24887.2] | 24,887.19 |  |  | 06 | 04 | 12 |

| ID | WBS | Activity | Duration | Start | Finish | Predecessors | Total float | Free float | Resources | Cost | Phasing Code Category | Discipline | Project component code |
| --- | --- | --- | --- | --- | --- | --- | --- | --- | --- | --- | --- | --- | --- |
|  | 2 | **ELECTRICAL** |  | 2027-01-23 | 2027-02-24 |  |  |  |  |  |  |  |  |
| P001-C-TC-E-3506 |  | Testing and Commissioning of Wiring Devices | 7d | 2027-01-23 | 2027-01-30 | DAM3-C-B6-E-403, DAM3-C-B5-E-863, DAM3-C-B4-E-633, DAM3-C-B3-E-633, DAM3-C-B2-E-173, P001-C-TC-M-3416, DAM3-C-B9-E-213 | 18.2d | 10d | Electrician [112 h]; Construction Cost [33207.2] | 33,207.17 | 06 | 05 | 12 |
| P001-C-TC-E-3496 |  | Testing and Commissioning of Fire Alarm System | 2d | 2027-02-01 | 2027-02-02 | P001-C-TC-M-3426, P001-C-TC-M-3416, DAM3-C-B6-E-353, DAM3-C-B5-E-813, DAM3-C-B4-E-583, DAM3-C-B3-E-583, DAM3-C-B2-E-123 | 15.2d | 7d | Electrician [32 h]; Construction Cost [139734] | 139,733.7 | 06 | 05 | 12 |
| P001-C-TC-E-3466 |  | Testing and Commissioning of Disconnect Switches | 7d | 2027-02-04 | 2027-02-11 | P001-C-TC-M-3436, P001-C-TC-M-3456, P001-C-TC-M3446, DAM3-C-B6-E-433, DAM3-C-B5-E-893, DAM3-C-B4-E-663, DAM3-C-B3-E-663, DAM3-C-B2-E-203, DAM3-C-B1-E-203, DAM3-C-B7-E-203, DAM3-C-B8-E-203, DAM3-C-B9-E-203, DAM3-C-B10-E-203, DAM3-C-B11-E-203 | 11.5d | 9d | Electrician [720 h]; Construction Cost [50288] | 50,288.02 | 06 | 05 | 12 |
| P001-C-TC-E-3546 |  | Testing and Commissioning of Access Control System | 2d | 2027-02-09 | 2027-02-10 | DAM3-C-B6-E-503, DAM3-C-B5-E-963, DAM3-C-B4-E-733, DAM3-C-B3-E-733, DAM3-C-B2-E-273 | 11.2d | 4d | Electrician [32 h]; Construction Cost [45341.1] | 45,341.12 | 06 | 05 | 12 |
| P001-C-TC-E-3486 |  | Testing and Commissioning of Grounding | 2d | 2027-02-09 | 2027-02-11 | DAM3-C-B6-E-343, DAM3-C-B5-E-803, DAM3-C-B4-E-573, DAM3-C-B3-E-573, DAM3-C-B2-E-113, DAM3-C-B1-E-113, DAM3-C-B7-E-113, DAM3-C-B8-E-113, DAM3-C-B9-E-113, DAM3-C-B10-E-113, DAM3-C-B11-E-113 | 12.8d | 5.6d | Electrician [32 h]; Construction Cost [32570.6] | 32,570.63 | 06 | 05 | 12 |
| P001-C-TC-E-3456 |  | Testing and Commissioning of Main Distribution Board | 3d | 2027-02-11 | 2027-02-14 | DAM3-C-B6-E-423, DAM3-C-B5-E-883, DAM3-C-B4-E-653, DAM3-C-B3-E-653, DAM3-C-B2-E-193, P001-C-TC-E-3496, P001-C-TC-E-3506, P001-C-TC-M-3396, P001-C-TC-M3446, DAM3-C-B11-E-153, DAM3-C-B10-E-153, DAM3-C-B5-E-993, DAM3-C-B5-E-1340, DAM3-C-B5-E-913, DAM3-C-B5-E-803 | 8.2d | 0d | Electrician [112 h]; Construction Cost [53313.4] | 53,313.44 | 06 | 05 | 12 |
| P001-C-TC-E-3446 |  | Testing and Commissioning of LV cables | 2d | 2027-02-14 | 2027-02-15 | DAM3-C-B6-E-453, DAM3-C-B5-E-913, DAM3-C-B4-E-683, DAM3-C-B3-E-683, DAM3-C-B2-E-223, P001-C-TC-M-3436 | 9.2d | 2d | Electrician [32 h]; Construction Cost [149517] | 149,517.23 | 06 | 05 | 12 |
| P001-C-TC-E-3526 |  | Testing and Commissioning of PP-AC panel | 2d | 2027-02-14 | 2027-02-15 | DAM3-C-B6-E-483, DAM3-C-B5-E-943, DAM3-C-B4-E-713, DAM3-C-B3-E-713, DAM3-C-B2-E-253, P001-C-TC-M-3376, P001-C-TC-M-3456 | 9.2d | 2d | Electrician [80 h]; Construction Cost [35542.3] | 35,542.28 | 06 | 05 | 12 |
| P001-C-TC-E-3516 |  | Testing and Commissioning of LP panel board | 2d | 2027-02-15 | 2027-02-16 | P001-C-TC-E-3456, DAM3-C-B6-E-473, DAM3-C-B5-E-933, DAM3-C-B4-E-703, DAM3-C-B3-E-703, DAM3-C-B2-E-243 | 8.2d | 1d | Electrician [32 h]; Construction Cost [30214.8] | 30,214.76 | 06 | 05 | 12 |
| P001-C-TC-E-3566 |  | Testing and Commissioning of CCTV System | 2d | 2027-02-15 | 2027-02-16 | DAM3-C-B6-E-720, DAM3-C-B5-E-1340, DAM3-C-B4-E-1030, DAM3-C-B3-E-1030, DAM3-C-B2-E-410 | 8.2d | 1d | Electrician [32 h]; Construction Cost [125349] | 125,349.49 | 06 | 05 | 12 |
| P001-C-TC-E-3536 |  | Testing and Commissioning of Telephone and data system | 2d | 2027-02-16 | 2027-02-17 | DAM3-C-B6-E-443, DAM3-C-B5-E-903, DAM3-C-B4-E-673, DAM3-C-B3-E-673, DAM3-C-B2-E-213, P001-C-TC-E-3546, DAM3-C-ENV-WS-826, DAM3-C-B9-E-303, DAM3-C-B3-E-763, DAM3-C-B3-E-613 | 7.2d | 0d | Electrician [80 h]; Construction Cost [44313.7] | 44,313.72 | 06 | 05 | 12 |
| P001-C-TC-E-3556 |  | Testing and Commissioning of Solar power plant | 2d | 2027-02-16 | 2027-02-18 | DAM3-C-B6-E-730, DAM3-C-B5-E-1350, DAM3-C-B4-E-1040, DAM3-C-B3-E-1040, DAM3-C-B2-E-420, DAM3-C-B11-E-420 | 7d | 6d | Electrician [720 h]; Construction Cost [415814] | 415,814.3 | 06 | 05 | 12 |
| P001-C-TC-E-3476 |  | Testing and Commissioning of Lighting Fixtures | 1d | 2027-02-24 | 2027-02-24 | P001-C-TC-E-3496, P001-C-TC-E-3466, P001-C-TC-E-3506, P001-C-TC-M-3396, P001-C-TC-M-3386, DAM3-C-B6-E-383, DAM3-C-B5-E-843, DAM3-C-B4-E-613, DAM3-C-B3-E-613, DAM3-C-B2-E-153, DAM3-C-B1-E-153, DAM3-C-B7-E-153, DAM3-C-B8-E-153, DAM3-C-B9-E-153, DAM3-C-B10-E-153, DAM3-C-B11-E-153 | 2.5d | 1.5d | Electrician [16 h]; Construction Cost [171257] | 171,257.21 | 06 | 05 | 12 |
|  | 4 | **TESTING AND COMMISSIONING SITE INFRASTRUCTURE** |  | 2026-10-13 | 2027-02-18 |  |  |  |  |  |  |  |  |
|  | 6 | **PUMP ROOM SHED** |  | 2026-12-07 | 2026-12-28 |  |  |  |  |  |  |  |  |
| S001-C-TC-M-3576 |  | Testing & Commissioning of Fire Fighting pump | 5d | 2026-12-07 | 2026-12-12 | DAM3-C-ENV-M-1301 | 65.5d | 64.5d | Pipe Fitter [80 h]; General Labour [80 h]; Construction Cost [51684.5] | 51,684.47 | 06 | 07 | 12 |
| S001-C-TC-M-3586 |  | Testing & Commissioning of Booster pump | 7d | 2026-12-07 | 2026-12-14 | DAM3-C-ENV-M-1341 | 63.5d | 62.5d | Pipe Fitter [360 h]; General Labour [360 h]; Construction Cost [6462.23] | 6,462.23 | 06 | 07 | 12 |
| S001-C-TC-M-3596 |  | Testing & Commissioning of GRP tank | 3d | 2026-12-07 | 2026-12-09 | DAM3-C-ENV-M-1371 | 67.5d | 66.5d | Plumber [360 h]; General Labour [360 h]; Construction Cost [104927] | 104,926.54 | 06 | 07 | 12 |
| S001-C-TC-E-3616 |  | Testing and Commissioning of Panel Board | 2d | 2026-12-09 | 2026-12-10 | DAM3-C-ENV-E-236 | 66.5d | 65.5d | Electrician [32 h]; Construction Cost [36675.7] | 36,675.69 | 06 | 07 | 12 |
| S001-C-TC-E-3636 |  | Testing and Commissioning of Grounding | 5d | 2026-12-13 | 2026-12-17 | DAM3-C-ENV-E-186 | 60.5d | 59.5d | Electrician [80 h]; Construction Cost [208.86] | 208.86 | 06 | 07 | 12 |
| S001-C-TC-E-3646 |  | Testing and Commissioning of Wiring devices | 2d | 2026-12-15 | 2026-12-16 | DAM3-C-ENV-E-1321 | 61.5d | 60.5d | Electrician [32 h]; Construction Cost [193.73] | 193.73 | 06 | 07 | 12 |
| S001-C-TC-E-3621 |  | Testing and Commissioning of LV cables | 3d | 2026-12-21 | 2026-12-23 | DAM3-C-ENV-E-216 | 55.5d | 54.5d | Electrician [80 h]; Construction Cost [76378.1] | 76,378.12 | 06 | 07 | 12 |
| S001-C-TC-E-3626 |  | Testing and Commissioning of Lighting Fixtures | 2d | 2026-12-22 | 2026-12-23 | DAM3-C-ENV-E-196 | 55.5d | 54.5d | Electrician [32 h]; Construction Cost [1429.61] | 1,429.61 | 06 | 07 | 12 |
| S001-C-TC-E-3656 |  | Testing and Commissioning of Programmable Logic Controller | 2d | 2026-12-27 | 2026-12-28 | DAM3-C-ENV-E-1331 | 51.5d | 0d | Electrician [64 h]; Construction Cost [28288.3] | 28,288.27 | 06 | 07 | 12 |

| ID | WBS | Activity | Duration | Start | Finish | Predecessors | Complete | Remaining | Planned start | Planned finish | Total float | Free float | Resources | Cost | Actual cost | Phasing Code Category | Discipline | Project component code |
| --- | --- | --- | --- | --- | --- | --- | --- | --- | --- | --- | --- | --- | --- | --- | --- | --- | --- | --- |
|  | 7 | **EXTERNAL** |  | 2027-01-13 | 2027-02-13 |  |  |  |  |  |  |  |  |  |  |  |  |  |
| S001-C-TC-EX-E-3646 |  | Testing and Commissioning of Street Lighting pole | 15d | 2027-01-13 | 2027-01-31 | DAM3-C-ENV-E-430, DAM3-C-B10-E-153 |  |  |  |  | 13d | 0.5d | Electrician [240 h]; Construction Cost [35084.4] | 35,084.37 |  | 06 | 07 | 12 |
| S001-C-TC-EX-E-3626 |  | Testing and Commissioning of LV cables | 7d | 2027-01-21 | 2027-01-30 | DAM3-C-ENV-E-380 |  |  |  |  | 14d | 1.5d | Electrician [112 h]; Construction Cost [14763.4] | 14,763.42 |  | 06 | 07 | 12 |
| S001-C-TC-EX-E-3656 |  | Testing and Commissioning of Grounding | 7d | 2027-02-04 | 2027-02-13 | DAM3-C-ENV-E-470 |  |  |  |  | 12d | 11d | Electrician [112 h]; Construction Cost [2931.87] | 2,931.87 |  | 06 | 07 | 12 |
|  | 5 | **ENVIRONMENTAL** |  | 2026-10-13 | 2027-02-18 |  |  |  |  |  |  |  |  |  |  |  |  |  |
| S001-C-TC-ENV-F-1051 |  | Testing & Commissioning of External Fire Fighting System 200 Dia | 15d | 2026-10-13 A | 2026-11-16 | DAM3-C-ENV-F-192 | 90% | 1.5d | 2026-11-15 | 2026-12-02 | 51.6d | 39.1d | Pipe Fitter [1440 h]; Construction Cost [72486.4] | 72,486.43 | 65,237.78 | 06 | 07 | 12 |
| S001-C-TC-ENV-SW-60 |  | Testing & Commissioning of Sewer & Drainage System | 3d | 2026-10-13 A | 2027-02-18 | DAM3-C-ENV-SW-546, P001-C-TC-E-3566, P001-C-TC-E-3516, P001-C-TC-E-3486, P001-C-TC-E-3536, P001-C-TC-E-3446, P001-C-TC-E-3526, DAM3-C-ENV-E-480, DAM3-C-B11-E-303, DAM3-C-B10-E-303 | 90% | 0.3d | 2027-02-18 | 2027-02-21 | 7.2d | 6.2d | Plumber [720 h]; Construction Cost [67394.2] | 67,394.23 | 60,654.81 | 06 | 07 | 12 |
| S001-C-TC-ENV-WS-11 |  | Testing & Commissioning of Water Supply System | 15d | 2026-12-23 | 2027-01-09 | DAM3-C-ENV-WS-766 |  |  |  |  | 19.5d | 7d | Plumber [1440 h]; Construction Cost [5327.52] | 5,327.52 |  | 06 | 07 | 12 |
| S001-C-TC-ENV-SW-70 |  | Testing & Commissioning of Irrigaiton System | 15d | 2027-01-24 | 2027-02-09 | DAM3-C-ENV-SW-606 |  |  |  |  | 14.5d | 13.5d | Plumber [240 h]; Construction Cost [11300.4] | 11,300.41 |  | 06 | 07 | 12 |
| S001-C-TC-ENV-3666 |  | Testing and Commissioning of Main program system & controller | 10d | 2027-02-01 | 2027-02-11 | DAM3-C-ENV-SW-616, S001-C-TC-EX-E-3626, S001-C-TC-EX-E-3646 |  |  |  |  | 12.5d | 11.5d | Electrician [240 h]; Construction Cost [14943] | 14,943.05 |  | 06 | 07 | 12 |
|  | 1 | **SNAGG WORKS** |  | 2026-06-17 | 2026-10-21 |  |  |  |  |  |  |  |  |  |  |  |  |  |
| S001-C-TC-C-80 |  | Civil & Architectural Snagg works-1 | 5d | 2026-06-17 A | 2026-06-20 A | DAM3-P-DL-A-210, DAM3-P-DL-A-330 | 100% |  | 2026-10-18 | 2026-10-22 |  |  | Construction Cost [1520575] | 1,520,575.29 | 1,520,575.29 | 06 | 08 | 12 |
| S001-C-TC-A-90 |  | Civil & Architectural Snagg works-2 | 5d | 2026-06-21 A | 2026-06-22 A | S001-C-TC-C-80 | 100% |  | 2026-10-20 | 2026-10-25 |  |  | Construction Cost [1000000] | 1,000,000 | 1,000,000 | 06 | 08 | 12 |
| S001-C-TC-E-3676 |  | External Snagg works | 5d | 2026-06-22 A | 2026-07-05 A | DAM3-C-B3-A-1440 | 100% |  | 2026-08-18 | 2026-08-24 |  |  | Construction Cost [3231301] | 3,231,301.32 | 3,231,301.32 | 06 | 07 | 12 |
| S001-C-TC-E-3606 |  | Electrical Snagg works | 5d | 2026-07-05 A | 2026-10-21 | S001-C-TC-E-3676 | 25% | 3.75d | 2026-08-17 | 2026-08-22 | 67.25d | 12.75d | Construction Cost [167105] | 167,105.15 | 41,776.29 | 06 | 05 | 12 |
| S001-C-TC-M-100 |  | Mechanical Snagg works | 5d | 2026-07-05 A | 2026-07-06 A | DAM3-C-B3-A-210 | 100% |  | 2026-07-25 | 2026-07-29 |  |  | Construction Cost [1206604] | 1,206,604.05 | 1,206,604.05 | 06 | 04 | 12 |
|  | 7 | **PREOJECT CLOSEOUT** |  | 2027-02-09 | 2027-03-06 |  |  |  |  |  |  |  |  |  |  |  |  |  |
|  | 1 | **ENGINEERING** |  | 2027-02-09 | 2027-02-18 |  |  |  |  |  |  |  |  |  |  |  |  |  |
|  | 1 | **AS BUILT DRAWINGS** |  | 2027-02-09 | 2027-02-16 |  |  |  |  |  |  |  |  |  |  |  |  |  |
|  | 4 | **CIVIL DRAWINGS** |  | 2027-02-09 | 2027-02-11 |  |  |  |  |  |  |  |  |  |  |  |  |  |
|  | 1 | **PREPARATION AND SUBMITTALS** |  | 2027-02-09 | 2027-02-11 |  |  |  |  |  |  |  |  |  |  |  |  |  |
| DAM3-AB-1010 |  | Civil drawings | 2d | 2027-02-09 | 2027-02-11 | DAM3-C-ENV-R-1500 SS |  |  |  |  | 0d |  | Draftman [32 h] |  |  | 07 |  |  |
|  | 2 | **REVIEW AND APPROVALS** |  | 2027-02-09 | 2027-02-11 |  |  |  |  |  |  |  |  |  |  |  |  |  |
| DAM3-AB-1053 |  | Civil drawings | 2d | 2027-02-09 | 2027-02-11 | DAM3-AB-1010 SS |  |  |  |  | 9d | 4d |  |  |  | 07 |  |  |

| ID | WBS | Activity | Duration | Start | Finish | Predecessors | Total float | Free float | Resources | Phasing Code Category |
| --- | --- | --- | --- | --- | --- | --- | --- | --- | --- | --- |
|  | 1 | **ARCHITECTURAL DRAWINGS** |  | 2027-02-11 | 2027-02-16 |  |  |  |  |  |
|  | 1 | **PREPARATION AND SUBMITTALS** |  | 2027-02-11 | 2027-02-14 |  |  |  |  |  |
| DAM3-AB-1011 |  | Architectural drawings | 2d | 2027-02-11 | 2027-02-14 | DAM3-AB-1010 | 0d |  | Draftman [32 h] | 07 |
|  | 2 | **REVIEW AND APPROVALS** |  | 2027-02-14 | 2027-02-16 |  |  |  |  |  |
| DAM3-AB-1023 |  | Architectural drawings | 2d | 2027-02-14 | 2027-02-16 | DAM3-AB-1011 | 5d | 0d |  | 07 |
|  | 2 | **MECHANICAL DRAWINGS** |  | 2027-02-11 | 2027-02-16 |  |  |  |  |  |
|  | 1 | **PREPARATION AND SUBMITTALS** |  | 2027-02-11 | 2027-02-14 |  |  |  |  |  |
| DAM3-AB-1013 |  | Mechanical drawings | 2d | 2027-02-11 | 2027-02-14 | DAM3-AB-1011 SS | 0d |  | Draftman [32 h] | 07 |
|  | 2 | **REVIEW AND APPROVALS** |  | 2027-02-14 | 2027-02-16 |  |  |  |  |  |
| DAM3-AB-1033 |  | Mechanical drawings | 2d | 2027-02-14 | 2027-02-16 | DAM3-AB-1013 | 5d | 0d |  | 07 |
|  | 3 | **ELECTRICAL DRAWINGS** |  | 2027-02-11 | 2027-02-16 |  |  |  |  |  |
|  | 1 | **PREPARATION AND SUBMITTALS** |  | 2027-02-11 | 2027-02-14 |  |  |  |  |  |
| DAM3-AB-1012 |  | Electrical drawings | 2d | 2027-02-11 | 2027-02-14 | DAM3-AB-1013 SS | 0d |  | Draftman [32 h] | 07 |
|  | 2 | **REVIEW AND APPROVALS** |  | 2027-02-14 | 2027-02-16 |  |  |  |  |  |
| DAM3-AB-1043 |  | Electrical drawings | 2d | 2027-02-14 | 2027-02-16 | DAM3-AB-1012 | 5d | 0d |  | 07 |
|  | 5 | **EXTERNAL WORKS DRAWINGS** |  | 2027-02-11 | 2027-02-16 |  |  |  |  |  |
|  | 1 | **PREPARATION AND SUBMITTALS** |  | 2027-02-11 | 2027-02-14 |  |  |  |  |  |
| DAM3-AB-1054 |  | External works drawings | 2d | 2027-02-11 | 2027-02-14 | DAM3-AB-1012 SS | 0d |  | Draftman [32 h] | 07 |
|  | 2 | **REVIEW AND APPROVALS** |  | 2027-02-14 | 2027-02-16 |  |  |  |  |  |
| DAM3-AB-1055 |  | External works drawings | 2d | 2027-02-14 | 2027-02-16 | DAM3-AB-1054 | 0d |  |  | 07 |
|  | 2 | **WARRANTIES AND GUARANTEES** |  | 2027-02-14 | 2027-02-18 |  |  |  |  |  |
|  | 1 | **SYSTEM** |  | 2027-02-14 | 2027-02-18 |  |  |  |  |  |
|  | 1 | **PREPARATION AND SUBMITTALS** |  | 2027-02-14 | 2027-02-16 |  |  |  |  |  |
| DAM3-WG-1010 |  | Warraties and Guarantees For Mechanical Equipments | 2d | 2027-02-14 | 2027-02-16 | DAM3-AB-1055 SS | 0d |  | Engineer [32 h] | 07 |
| DAM3-WG-1011 |  | Warraties and Guarantees For Electrical Systems | 2d | 2027-02-14 | 2027-02-16 | DAM3-WG-1010 SS | 0d |  | Engineer [32 h] | 07 |

| ID | WBS | Activity | Duration | Start | Finish | Predecessors | Total float | Free float | Resources | Phasing Code Category |
| --- | --- | --- | --- | --- | --- | --- | --- | --- | --- | --- |
|  | 2 | **REVIEW AND APPROVAL** |  | 2027-02-16 | 2027-02-18 |  |  |  |  |  |
| DAM3-WG-1012 |  | Warraties and Guarantees For Mechanical Equipments | 2d | 2027-02-16 | 2027-02-18 | DAM3-WG-1010 | 0d |  |  | 07 |
| DAM3-WG-1013 |  | Warraties and Guarantees For Electrical Systems | 2d | 2027-02-16 | 2027-02-18 | DAM3-WG-1011 | 0d |  |  | 07 |
|  | 2 | **TRAINING AND MANUALS** |  | 2027-02-18 | 2027-03-03 |  |  |  |  |  |
|  | 1 | **TRAINING** |  | 2027-02-18 | 2027-02-27 |  |  |  |  |  |
|  | 1 | **SYSTEM** |  | 2027-02-18 | 2027-02-27 |  |  |  |  |  |
|  | 1 | **PREPARATION AND SUBMITTALS** |  | 2027-02-18 | 2027-02-21 |  |  |  |  |  |
| DAM3-WG-1014 |  | The Proposed Coursework For Mechanical Equipment | 2d | 2027-02-18 | 2027-02-21 | DAM3-WG-1012 | 0d |  | Engineer [32 h] | 07 |
| DAM3-WG-1015 |  | The Proposed Coursework For Electircal systems | 2d | 2027-02-18 | 2027-02-21 | DAM3-WG-1014 SS, DAM3-WG-1013 | 0d |  | Engineer [32 h] | 07 |
|  | 2 | **REVIEW AND APPROVAL** |  | 2027-02-21 | 2027-02-24 |  |  |  |  |  |
| DAM3-WG-1016 |  | The Proposed Coursework For Mechanical Equipment | 2d | 2027-02-21 | 2027-02-24 | DAM3-WG-1014 | 0d |  |  | 07 |
| DAM3-WG-1017 |  | The Proposed Coursework For Electircal systems | 2d | 2027-02-21 | 2027-02-24 | DAM3-WG-1016 SS, DAM3-WG-1015, DAM3-WG-1015 FF | 0d |  |  | 07 |
|  | 3 | **DELIVERY** |  | 2027-02-24 | 2027-02-27 |  |  |  |  |  |
| DAM3-WG-1018 |  | The Proposed Coursework For Mechanical Equipment | 2d | 2027-02-24 | 2027-02-27 | DAM3-WG-1016 | 0d |  |  | 07 |
| DAM3-WG-1019 |  | The Proposed Coursework For Electircal systems | 2d | 2027-02-24 | 2027-02-27 | DAM3-WG-1018 SS, DAM3-WG-1017 | 0d |  |  | 07 |
|  | 2 | **MANUALS** |  | 2027-02-27 | 2027-03-03 |  |  |  |  |  |
|  | 1 | **SYSTEM** |  | 2027-02-27 | 2027-03-03 |  |  |  |  |  |
|  | 1 | **PREPARATION AND SUBMITTALS** |  | 2027-02-27 | 2027-03-01 |  |  |  |  |  |
| DAM3-WG-1020 |  | Manual and Catalogue For Mechanical Equipment | 2d | 2027-02-27 | 2027-03-01 | DAM3-WG-1018 | 1d | 0d | Engineer [32 h] | 07 |
| DAM3-WG-1021 |  | Manual and Catalogue For For Electircal systems | 2d | 2027-02-27 | 2027-03-01 | DAM3-WG-1019 | 0d |  | Engineer [32 h] | 07 |
|  | 2 | **REVIEW AND APPROVAL** |  | 2027-03-01 | 2027-03-03 |  |  |  |  |  |
| DAM3-WG-1022 |  | Manual and Catalogue For Mechanical Equipment | 2d | 2027-03-01 | 2027-03-03 | DAM3-WG-1020 | 1d |  |  | 07 |
| DAM3-WG-1023 |  | Manual and Catalogue For For Electircal systems | 2d | 2027-03-01 | 2027-03-03 | DAM3-WG-1021 | 0d |  |  | 07 |
|  | 4 | **DEMOBILIZATION** |  | 2027-02-16 | 2027-03-04 |  |  |  |  |  |
| DAM3-D.MOB-1013 |  | Demobilization of manpower | 2d | 2027-02-16 | 2027-02-18 | DAM3-AB-1010, DAM3-AB-1011, DAM3-AB-1013, DAM3-AB-1012, DAM3-AB-1023, DAM3-AB-1033, DAM3-AB-1043, DAM3-AB-1053, DAM3-AB-1055 | 5d | 0d |  | 07 |
| DAM3-D.MOB-1020 |  | Demobilization of equipment | 2d | 2027-02-18 | 2027-02-21 | DAM3-D.MOB-1013 | 5d | 4d |  | 07 |
| DAM3-D.MOB-1010 |  | Dismantling and removal offices | 1d | 2027-03-03 | 2027-03-04 | DAM3-WG-1023 | 0d |  | Helper [16 h]; Plumber [16 h]; Mason [16 h]; Electrician [16 h]; AC Technician [16 h]; STEEL FIXER [16 h]; Carpenter [16 h] | 07 |

| ID | WBS | Activity | Duration | Start | Finish | Predecessors | Total float | Free float | Phasing Code Category |
| --- | --- | --- | --- | --- | --- | --- | --- | --- | --- |
|  | 5 | **FINAL HANDOVER** |  | 2027-02-27 | 2027-03-06 |  |  |  |  |
| DAM3-FH-1000 |  | Snag List Rectification | 3d | 2027-02-27 | 2027-03-02 | DAM3-D.MOB-1013 SS, DAM3-D.MOB-1020, S001-C-TC-M-3586, S001-C-TC-M-3576, S001-C-TC-M-3596, S001-C-TC-E-3636, S001-C-TC-E-3626, S001-C-TC-E-3621, S001-C-TC-E-3616, S001-C-TC-E-3646, S001-C-TC-EX-E-3656, S001-C-TC-EX-E-3626, S001-C-TC-EX-E-3646, S001-C-TC-ENV-F-1051, S001-C-TC-ENV-SW-60, S001-C-TC-ENV-WS-11, P001-C-TC-M-3406, P001-C-TC-E-3546, DAM3-C-ENV-M-1391, DAM3-C-ENV-E-480, DAM3-C-ENV-S-1384, DAM3-C-ENV-R-1440, P001-C-TC-E-3446, P001-C-TC-E-3486, P001-C-TC-E-3536, P001-C-TC-E-3526, P001-C-TC-E-3516, DAM3-PMS-MMS-0030, DAM3-PMS-MMS-0020, DAM3-PMS-MMS-0070, DAM3-PMS-MMS-0040, DAM3-PMS-MMS-0060, DAM3-PMS-MMS-0050, DAM3-PMS-MMS-0080, DAM3-PMS-DMS-2320, DAM3-PMS-DMS-2370, DAM3-PMS-DMS-2460, DAM3-PMS-DMS-2450, DAM3-C-ENV-SW-546, DAM3-C-B4-E-763, P001-C-TC-M-3376, DAM3-C-B6-SS-1040, DAM3-C-B6-SS-1060, DAM3-C-B6-M-680, DAM3-C-B6-M-550, DAM3-C-B6-M-640, DAM3-C-B6-E-533, DAM3-C-B5-SS-1020, DAM3-C-B5-SS-1040, DAM3-C-B5-A-1780, DAM3-C-B5-M-1300, DAM3-C-B5-M-1170, DAM3-C-B5-M-1260, DAM3-C-B5-E-993, DAM3-C-B4-SS-1020, DAM3-C-B4-SS-1040, DAM3-C-B4-A-1370, DAM3-C-B4-M-990, DAM3-C-B4-M-860, DAM3-C-B4-M-950, DAM3-C-B3-SS-1020, DAM3-C-B3-SS-1040, DAM3-C-B3-A-1260, DAM3-C-B3-A-1370, DAM3-C-B3-M-990, DAM3-C-B3-M-860, DAM3-C-B3-M-950, DAM3-C-B3-E-763, DAM3-C-B2-SS-1020, DAM3-C-B2-SS-1040, DAM3-C-B2-A-420, DAM3-C-B2-M-370, DAM3-C-B2-M-429, DAM3-C-B2-M-330, DAM3-C-B2-E-303, DAM3-C-ENV-WS-826, DAM3-C-PR-S-368, DAM3-C-ENV-R-1520, P001-C-TC-E-3566, P001-C-TC-E-3556, S001-C-TC-E-3656, S001-C-TC-ENV-SW-70, S001-C-TC-ENV-3666, P001-C-TC-E-3476, DAM3-C-B1-SS-1020, DAM3-C-B1-SS-1040, DAM3-C-B1-A-420, DAM3-C-B1-M-370, DAM3-C-B1-M-429, DAM3-C-B1-M-330, DAM3-C-B1-E-303, DAM3-C-B7-SS-1020, DAM3-C-B7-SS-1040, DAM3-C-B7-A-420, DAM3-C-B7-M-370, DAM3-C-B7-M-429, DAM3-C-B7-M-330, DAM3-C-B7-E-303, DAM3-C-B8-SS-1020, DAM3-C-B8-SS-1040, DAM3-C-B8-A-420, DAM3-C-B8-M-370, DAM3-C-B8-M-429, DAM3-C-B8-M-330, DAM3-C-B8-E-303, DAM3-C-B9-SS-1020, DAM3-C-B9-SS-1040, DAM3-C-B9-A-420, DAM3-C-B9-M-370, DAM3-C-B9-M-429, DAM3-C-B9-M-330, DAM3-C-B9-E-303, DAM3-C-B10-SS-1020, DAM3-C-B10-SS-1040, DAM3-C-B10-A-420, DAM3-C-B10-M-370, DAM3-C-B10-M-429, DAM3-C-B10-M-330, DAM3-C-B10-E-303, DAM3-C-B11-SS-1020, DAM3-C-B11-SS-1040, DAM3-C-B11-A-420, DAM3-C-B11-M-370, DAM3-C-B11-M-429, DAM3-C-B11-M-330, DAM3-C-B11-E-303, S001-C-TC-A-90, S001-C-TC-E-3606, S001-C-TC-M-100, DAM3-C-B11-A-340 | 1d | 0d | 07 |
| DAM3-FH-1010 |  | Handover Letter | 1d | 2027-03-02 | 2027-03-03 | DAM3-FH-1000 | 1d |  | 07 |
| DAM3-FH-1020 |  | Intial Handingover | 1d | 2027-03-04 | 2027-03-06 | DAM3-FH-1010, DAM3-WG-1022, DAM3-D.MOB-1010 | 0d |  | 07 |

## Activity codes

| Code | Value | Meaning |
| --- | --- | --- |
| Discipline | 01 | Structural |
| Discipline | 02 | Structural Steel |
| Discipline | 03 | Architectural |
| Discipline | 04 | Mechanical |
| Discipline | 05 | Electrical |
| Discipline | 07 | External work |
| Discipline | 08 | Environmental |
| New code for weekly report-4 | 4 | Support Unit , RBF 450 & 900 |
| New discipline code-4 | 1 | Structural |
| PS (su & rbf)-4 | 1 | SU |
| Phasing Code Category | 01 | Mile Stones |
| Phasing Code Category | 02 | Mobilization |
| Phasing Code Category | 03 | Engineering |
| Phasing Code Category | 04 | Procurement |
| Phasing Code Category | 05 | Construction |
| Phasing Code Category | 06 | Testing and Commissioning |
| Phasing Code Category | 07 | Project Closeout |
| Procurement Lead Category | 01 | Long Lead Items |
| Procurement Lead Category | 02 | Short Lead Items |
| Procurement Stages | 01 | PO |
| Procurement Stages | 02 | Manufacturing |
| Procurement Stages | 03 | Material Delivery |
| Procurement Stages | 04 | Staging |
| Project component code | 01 | Block B6 |
| Project component code | 02 | Block B5 |
| Project component code | 03 | Block B4 |
| Project component code | 04 | Block B3 |
| Project component code | 05 | Block B2 |
| Project component code | 06 | Block B1 |
| Project component code | 07 | Block B7 |
| Project component code | 08 | Block B8 |
| Project component code | 09 | Block B9 |
| Project component code | 10 | Block B10 |
| Project component code | 11 | Block B11 |
| Project component code | 12 | External work |
| project summary-4 | 3 | STRUCTURAL WORKS |
