# JDH4-02-007-R-UP-Land Development of Jeddah Oasis- 20 Oct 2026

Schedule from Primavera P6, 2025-11-24 to 2027-01-14, data date 2026-10-20, costs in USD, A marks actual dates.
Must finish by 2027-05-23

## Calendars

- MODON-(6 Day X 10Hrs): Mon-Thu 07:00-17:00; Fri off; Sat-Sun 07:00-17:00. Exceptions (off unless hours are given): 2026-02-22, 2026-03-18 to 2026-03-19, 2026-03-21, 2026-05-26 to 2026-05-28, 2026-09-23.
- MODON-(6 Day X 8hrs): Mon-Thu 07:00-11:00, 13:00-17:00; Fri off; Sat-Sun 07:00-11:00, 13:00-17:00. Exceptions (off unless hours are given): 2026-02-22, 2026-03-18 to 2026-03-19, 2026-03-21, 2026-05-26 to 2026-05-28, 2026-09-23.

## Resources

| Resource | Group | Rate |
| --- | --- | --- |
| Excavator | equipment |  |
| Loader | equipment |  |
| Bulldozer | equipment |  |
| Truck | equipment |  |
| Labor | labor |  |
| Driver | labor |  |
| Eq. Operator | labor |  |
| Concrete demolition works at the existing Underpass | material | 282.43 |
| Milling machine | equipment |  |
| Bobcat | equipment |  |
| Removal of the existing asphalt layers (up to base course layer) | material | 28.24 |
| Milling of the existing asphalt layer | material | 18.83 |
| Water Tanker | equipment |  |
| Road Roller | equipment |  |
| Compactor | equipment |  |
| Re-use and compaction of the existing aggregate base course layer | material | 28.24 |
| Demolishing of existing Lighting Pole | material | 2824.26 |
| Single house connection dia 63 mm | material | 188.28 |
| Pipe with diameter 200 mm | material | 235.35 |
| Wash out valve with chamber; on 200 mm dia pipeline | material | 23535.5 |
| Pipe with diameter 63 mm pipe | material | 141.21 |
| Pipe with diameter 200 mm pipe | material | 188.28 |
| Pipe with diameter 250 mm pipe | material | 282.43 |
| Wash out valve with chamber; on 200 mm dia pipeline Depth 1.5 - 4.0m | material | 30125.4 |
| Gate valves on 200 mm pipeline | material | 1882.84 |
| Pipe with diameter 200 mm pipe with depth 2.50 - 3.50m | material | 564.85 |
| Pipe with diameter 250 mm pipe with depth 3.50 - 4.50m | material | 753.14 |
| Manhole with depth 1.50m - 2.50m | material | 18828.4 |
| Manhole with depth 4.50m - 5.50m | material | 23535.5 |
| Manhole | material | 13179.9 |
| Baffle box with dimentions 3.04x7.80m | material | 28242.6 |
| Pipe with diameter 600 mm pipe | material | 753.14 |
| Pipe with diameter 800 mm pipe | material | 847.28 |
| Grider | equipment |  |
| Road excavation | material | 26.36 |
| Plots excavation | material | 26.36 |
| Road backfilling | material | 23.54 |
| Plots backfilling | material | 23.54 |
| Subgrade | material | 33.89 |
| Compacted structural backfill for closing the underpass | material | 112.97 |
| Aggregate base course | material | 51.78 |
| Asphalte Paver | equipment |  |
| Bituminous base course (Grading I - Class A), including Prime Coat (MC1) and tack coat (RC2) (if any) | material | 583.68 |
| Bituminous concrete wearing course, (Grading I - Class A), including tack coat (RC2). | material | 611.92 |
| Skilled Labor | labor |  |
| Precast Concrete curb, Type (K1) | material | 59.08 |
| Precast Concrete curb, Type (K2) | material | 59.08 |
| Precast Concrete curb, Type (K4) | material | 59.08 |
| Mason | labor |  |
| Interlocking block pavers for sidewalk/footpath | material | 70.61 |
| Retroreflective Thermoplastic White Traffic lines | material | 43.51 |
| Retroreflective Thermoplastic Yellow Traffic lines | material | 43.51 |
| Retroreflective raised pavement markers (Type A) | material | 43.51 |
| Solar powered lighting cateyes pavement markers | material | 43.51 |
| Traffic signs, ground mounted, 1 Sheet Alumenium, (breakaway)Single post, with all accessories according to the drawings and specifications. | material | 3865.08 |
| Traffic signs, ground mounted, 2 Sheet Alumenium, (breakaway)Single post, with all accessories according to the drawings and specifications. | material | 3865.08 |
| Traffic signs, ground mounted, Sheet Alumenium, (breakaway) Double post with all accessories according to the drawings and specifications. | material | 3865.08 |
| Steel Fixer | labor |  |
| Guard rails | material | 329.5 |
| Carpenter | labor |  |
| RC wall and the foundation at face of underpass | material | 1506.27 |
| Excavation for Trench size 40cm wide and 80cm deep (for 1 cable) | material | 38.83 |
| Excavation for Trench size 60cm wide and 80cm deep ( for 2 cables) | material | 38.83 |
| Excavation for Trench size 90cm wide and 80cm deep ( for 3 cables) | material | 38.83 |
| Electrician | labor |  |
| 6-way Duct Bank (6x150mm duct) | material | 690.37 |
| 4-way Duct Bank (4x150mm duct) | material | 690.37 |
| 2-way Duct Bank (2x150mm duct) | material | 690.37 |
| Cable: 15KV 3Cx500mm² AL/XLPE/LLDPE unarmored | material | 221.3 |
| Straight joints cables for 15KV 3x500mm² AL/XLPE/LLDPE unarmored | material | 221.3 |
| Cable Termination for 15KV 3Cx500mm² AL/XLPE/LLDPE | material | 221.3 |
| Cables, Aluminium, (4Cx185mm²,AL/XLPE/PVC). | material | 235.24 |
| Cables, Copper, (4Cx95mm²,Cu/XLPE/SWA/PVC + 1x50mm² PVC/ECC). | material | 235.24 |
| Cables, Copper, (4Cx50mm²,Cu/XLPE/SWA/PVC + 1x25mm² PVC/ECC). | material | 235.24 |
| Low Voltage Distribution Panel (Main: 100A, MCCB, 5-50A, MCCB) | material | 23535.5 |
| Excavation for Low Voltage Cable | material | 56.49 |
| Unit Substation , 13.8/0.4 kV, 500kVA with RMU | material | 112970 |
| Ring Main Unit (RMU) 3-way, 13.8kV | material | 94142 |
| Excavation for Low Voltage Cable | material | 37.66 |
| Low Voltage Cables | material | 56.49 |
| Crane | equipment |  |
| Lighting poles with one arm, height of ( 7 ) meters, including the power distribution box, cables , and RCC foundation. | material | 3121.26 |
| Lighting poles with two arm, height of ( 7 ) meters, including the power distribution box, cables , and RCC foundation. | material | 3121.26 |
| Street Lighting ( LED) Luminaire,of Output? 10830 lumen complete with control gear and lamp, (75) WATT, 230 Volt, 60 HZ | material | 742.94 |
| Street Lighting ( LED) Luminaire,of Output? 6730 lumen complete with control gear and lamp, (45) WATT, 230 Volt, 60 HZ | material | 742.94 |
| Including earthing of lighting poles ,masts. feeder pillars , Unit substations, L.V feeders and KWH meter. | material | 5648.52 |
| Road crossing ducts, 2 way (2 x 100mm PVC) | material | 366.83 |
| Road crossing ducts, 4 way (2 x 2 x100mm PVC) | material | 366.83 |
| Road crossing ducts, 6 way (3 x 2 x100mm PVC) | material | 366.83 |
| Street Lighting Feeder pillars | material | 32949.7 |
| Relocating of existing Lighting Pole | material | 2353.55 |
| Installation Road Crossing R/F 6 way 50mm HDPE Pipe | material | 282.43 |
| Installation Road Crossing Un R/F 6 way 50mm HDPE Pipe | material | 423.64 |
| 2 x 32 mm diameter HDPE ducts | material | 131.8 |
| Plumber | labor |  |
| Manhole type 1 (1500*1200*1200) mm | material | 8472.78 |
| Manhole type 2 (1500*1200*1200) mm | material | 8472.78 |
| Depth: 0.0m - 1.5m | material | 32.19 |
| Depth: 1.51m - 2.5m | material | 16.1 |
| Pipe-Laying Worker | labor |  |
| Depth: > 2.5 | material | 160.97 |
| Depth: 0.0m - 1.5m | material | 64.39 |
| Depth: > 1.5m | material | 16.1 |
| Depth: 0.0m - 1.5m | material | 32.19 |
| Depth >1.5 m | material | 32.19 |
| Depth: 0.0m - 1.5m | material | 32.19 |
| Depth: 1.51m - 2.5m | material | 32.19 |
| Depth > 2.5 m | material | 32.19 |
| Pipe encasement diameter 160 mm | material | 208.87 |
| Pipe encasement diameter 200 mm | material | 208.87 |
| Pipe encasement diameter 250 mm | material | 208.87 |
| Pipe encasement diameter 315 mm | material | 208.87 |
| Gate valves dia (150) mm on pipe dia (160) mm . | material | 3922.58 |
| Gate valves dia (200) mm on pipe dia (200) mm . | material | 3922.58 |
| Gate valves dia (250) mm on pipe dia (250) mm . | material | 3922.58 |
| Butterfly valves | material | 14121.3 |
| Wash out valve with dia 100 mm on pipe dia (160) mm . | material | 4916.3 |
| Wash out valve with dia 100 mm on pipe dia (200) mm . | material | 4916.3 |
| Wash out valve with dia 100 mm on pipe dia (315) mm . | material | 4916.3 |
| Air valves with dia 50 mm on pipe dia (200) mm. | material | 7531.36 |
| 3-outlet fire hydrant | material | 9414.2 |
| Chamber at pipe 315 mm Dia, Depth 0- 1.5 m | material | 38833.6 |
| Chamber at pipe 315 mm Dia, Depth 1.51- 2.5 m | material | 38833.6 |
| Chamber at pipe 315 mm Dia, Depth > 2.5 m | material | 38833.6 |
| Wash out chamber; on 160 mm dia pipeline Depth 0 - 1.5m | material | 43409.9 |
| Wash out chamber; on 160 mm dia pipeline Depth 1.51 - 2.5m | material | 43409.9 |
| Wash out chamber; on 160 mm dia pipeline, Depth > 2.5 m | material | 43409.9 |
| Wash out chamber; on 200 mm dia pipeline Depth 0 - 1.5m | material | 43409.9 |
| Wash out chamber; on 200 mm dia pipeline Depth 1.51 - 2.5m | material | 43409.9 |
| Wash out chamber; on 200 mm dia pipeline, Depth > 2.5 m | material | 43409.9 |
| Wash out chamber; on 315 mm dia pipeline Depth 1.51 - 2.5m | material | 43409.9 |
| Wash out chamber; on 315 mm dia pipeline, Depth > 2.5 m | material | 43409.9 |
| Air valve chamber; on 200 mm dia pipeline Depth 0 - 1.5m | material | 34126.5 |
| Air valve chamber; on 200 mm dia pipeline Depth 1.51 - 2.5m | material | 34126.5 |
| Air valve chamber; on 200 mm dia pipeline, Depth > 2.5 m | material | 34126.5 |
| Air valve chamber; on 250 mm dia pipeline Depth 0 - 1.5m | material | 34126.5 |
| Air valve chamber; on 250 mm dia pipeline Depth 1.51 - 2.5m | material | 34126.5 |
| Air valve chamber; on 250 mm dia pipeline, Depth > 2.5 m | material | 34126.5 |
| Air valve chamber; on 315 mm dia pipeline Depth 0 - 1.5m | material | 34126.5 |
| Air valve chamber; on 315 mm dia pipeline Depth 1.51 - 2.5m | material | 34126.5 |
| Air valve chamber; on 315 mm dia pipeline, Depth > 2.5 m | material | 34126.5 |
| HDPE road croosing | material | 941.42 |
| Depth: 0.0m - 1.5m | material | 35.71 |
| Depth: 1.51m - 2.5m | material | 17.86 |
| Depth > 2.5 m | material | 178.55 |
| Depth: 0.0m - 1.5m | material | 71.42 |
| Depth > 1.5 m | material | 17.86 |
| Depth: 0.0m - 1.5m | material | 35.71 |
| Depth: 1.51m - 2.5m | material | 35.71 |
| Depth > 2.5 m | material | 35.71 |
| Depth: 0.0m - 1.5m | material | 35.71 |
| Depth: 1.51m - 2.5m | material | 35.71 |
| Depth: > 2.5 m | material | 35.71 |
| Pipe encasement dia 110 mm | material | 225.52 |
| Pipe encasement dia 160 mm | material | 225.52 |
| Pipe encasement dia 200 mm | material | 225.52 |
| Pipe encasement dia 250 mm | material | 225.52 |
| Pipe encasement dia 400 mm | material | 225.52 |
| Pipe encasement dia 500 mm | material | 225.52 |
| Gate valves dia (100) mm on pipe dia (110) mm . | material | 5574.2 |
| Gate valves dia (150) mm on pipe dia (160) mm . | material | 5574.2 |
| Gate valves dia (200) mm on pipe dia (200) mm . | material | 5574.2 |
| Gate valves dia (250) mm on pipe dia (250) mm . | material | 5574.2 |
| Butterfly valves with dia (300) mm on pipe dia (315) mm | material | 32949.7 |
| Butterfly valves with dia (400) mm on pipe dia (355) mm | material | 32949.7 |
| Wash out valve with dia 100 mm on pipe dia (110) mm . | material | 8708.14 |
| Wash out valve with dia 100 mm on pipe dia (200) mm . | material | 8708.14 |
| Wash out valve with dia 100 mm on pipe dia (315) mm . | material | 8708.14 |
| Air valves with dia 50 mm on pipe dia (110mm) . | material | 10826.3 |
| Air valves with dia 50 mm on pipe dia (200 mm) . | material | 10826.3 |
| Air valves with dia 50 mm on pipe dia (315 mm) . | material | 10826.3 |
| Chamber at pipe 315 mm Dia, Depth 1.5 - 4.0 m | material | 56485.2 |
| Chamber at pipe 400 mm Dia, Depth 1.5 - 4.0 m | material | 56485.2 |
| Wash Out Valve Chambers | material | 56485.2 |
| Air valve chamber; on 110 mm dia pipeline Depth 1.5 - 4.0m | material | 56485.2 |
| Air valve chamber; on 200 mm dia pipeline Depth 1.5 - 4.0m | material | 56485.2 |
| Air valve chamber; on 315 mm dia pipeline Depth 1.5 - 4.0m | material | 56485.2 |
| POC with dia 90 mm | material | 6202.3 |
| POC with dia 110 mm | material | 6202.3 |
| POC with dia 160 mm | material | 6202.3 |
| Irrigation Riser with | material | 6589.94 |
| Depth : 0.0m - 1.5m | material | 73.41 |
| Depth : 1.51m - 2.5m | material | 36.71 |
| Depth > 2.5 m | material | 367.06 |
| Depth: 0.0m - 1.5m | material | 146.82 |
| Depth: 1.51m - 2.5m | material | 36.71 |
| Depth: 2.51m - 3.5m | material | 36.71 |
| Depth > 3.5 m | material | 36.71 |
| Depth: 1.51m - 2.5m | material | 36.71 |
| Depth > 2.5 m | material | 73.41 |
| MH depth 0 - 1.5m | material | 24210.2 |
| MH depth 1.51 - 2.5m | material | 24210.2 |
| MH depth 2.51 - 3.5m | material | 24210.2 |
| MH depth 2.51 - 3.5m with back drop | material | 24210.2 |
| MH depth 3.51 -4.5m with back drop | material | 24210.2 |
| MH depth 4.51 -5.5 m | material | 24210.2 |
| MH depth 4.51 -5.5 m with back drop | material | 24210.2 |
| Pipe encasement dia 150 mm | material | 227.03 |
| Pipe encasement dia 200 mm | material | 227.03 |
| Pipe encasement dia 250 mm | material | 227.03 |
| Depth: 0.0m - 1.5m | material | 85.16 |
| Depth > 1.5 m | material | 85.16 |
| Depth: 0.0m - 1.5m | material | 85.16 |
| Depth: 0.0m - 1.5m | material | 85.16 |
| Depth: 1.51m - 2.0m | material | 42.58 |
| Depth > 2 m | material | 42.58 |
| Depth: 0.0m - 1.5m | material | 42.58 |
| Depth > 2 m | material | 42.58 |
| Depth: 0.0m - 1.5m | material | 596.14 |
| Depth: 1.51m - 2.0m | material | 596.14 |
| Depth: 2.01m - 2.5m | material | 596.14 |
| Depth: 1.50m - 2.0m | material | 596.14 |
| Depth: 2.01m - 2.5m | material | 42.58 |
| Depth > 2.5m | material | 42.58 |
| Depth: 1.50m - 2.0m | material | 42.58 |
| Depth > 2.5m | material | 42.58 |
| Depth: 1.50m - 2.0m | material | 85.16 |
| Depth: 2.01m - 2.5m | material | 85.16 |
| Depth: 2.51m - 3.0m | material | 85.16 |
| Depth: 0.0m - 1.5m | material | 85.16 |
| Excavation For Box Culvert | material | 28.24 |
| Backfilling For Box Culvert | material | 37.66 |
| Plain Concrete for box culvert | material | 564.85 |
| Steel Reinforcement for box culverts | material | 3765.68 |
| Reinforced Concrete for box culvert | material | 640.17 |
| MH depth 1.50 - 2.0m | material | 27886.4 |
| MH depth > 2 m | material | 27886.4 |
| MH depth 1.5 - 2.0m | material | 27886.4 |
| MH depth > 2.5 m | material | 27886.4 |
| MH depth 2.0 - 2.5m | material | 27886.4 |
| MH depth 2.51 - 3.0m | material | 27886.4 |
| MH depth 3.01 - 3.5m | material | 27886.4 |
| Cover with dimensions1000*1000 mm at variable depth including frame | material | 2824.26 |
| Double Catch basin | material | 6119.23 |
| Concrete outfall structure | material | 37656.8 |
| Pipe encasement dia 300 mm | material | 488.03 |
| Pipe encasement dia 400 mm | material | 488.03 |
| Pipe encasement dia 500 mm | material | 488.03 |
| Pipe encasement dia 700 mm | material | 488.03 |
| Channel excavation | material | 16.95 |
| Backfill of the existing channel | material | 18.83 |
| Compaction | material | 28.24 |
| Finished grouted riprap for side ditches | material | 122.38 |
| gravel beddings | material | 141.21 |
| Chain Link Fence | material | 894.35 |
| Pedestrian Gate | material | 9414.2 |
| Excavation | material | 47.07 |
| Backfilling | material | 47.07 |
| Lean concrete under the foundations | material | 517.78 |
| Footings For Sewage Lift Station | material | 3765.68 |
| Cast concrete for trench Including Mastic sealant | material | 3765.68 |
| Install Stainless steel | material | 1882.84 |
| Install 250 micron polyethylene sheet under slab on grade and footings | material | 56.49 |
| Applying 2 Coats of Bituminous Paint | material | 28.24 |
| Submersible pump | material | 174163 |
| Double flanged eccentric reducer DN250/pump delivery | material | 3512.22 |
| Double flanged pipe piece DN250 - different lengths | material | 3512.22 |
| Double flanged elbow DN250 | material | 3512.22 |
| Manually operated Gate Valve DN250 | material | 7217.55 |
| Manually operated Gate Valve DN150 | material | 7217.55 |
| Manually operated Gate Valve DN80 | material | 7217.55 |
| Dismantling Joint DN250 | material | 4142.25 |
| Dismantling Joint DN150 | material | 4142.25 |
| Non Return Valve DN250 | material | 7060.65 |
| Air Valve DN60 | material | 5648.52 |
| Bauer Coupling DN150 | material | 7060.65 |
| Odors scrubbing system | material | 235355 |
| Manually operated davit crane (portable) | material | 141213 |
| Complete the works of air vent at wet well. | material | 2353.55 |
| Complete the works of air vent at screen chamber. | material | 2353.55 |
| Screening Container | material | 14121.3 |
| Baffle Plates | material | 14121.3 |
| Between wet well and valve chamber | material | 47071 |
| Between valve chamber and site fence | material | 47071 |
| Anti-Water Hammer Equipment | material | 1317988 |
| Air Conditioning | material | 14121.3 |
| Bulk Fuel storage tank, 2500 Liter (7 Days of storage) | material | 28242.6 |
| Fuel pump set , 1 duty and 1 standby, Capacity 100 L/h, Head 1 Bar | material | 70606.5 |
| Pipes and Fitting Works | material | 14121.3 |
| Fire fighting for electrical room which has a volume of about 62 m3 | material | 70606.5 |
| Foam type - wheeled type 20 Gallon capacity-ref. FE-01 | material | 14121.3 |
| Main Distribution Board/MCC Panel | material | 112970 |
| Panel Board | material | 42363.9 |
| MCP-LP-01 | material | 37656.8 |
| MCP-LP-02 | material | 37656.8 |
| OD-CP | material | 42363.9 |
| FP-CP | material | 42363.9 |
| Standby Diesel Generator | material | 112970 |
| Power Factor Correction Capacitor Bank | material | 32949.7 |
| 4Cx 50mm² + 1Cx25mm² Cu/XLPE/SWA/PVC | material | 158.62 |
| 4Cx 16mm² + 1Cx16mm² Cu/XLPE/SWA/PVC | material | 158.62 |
| 4Cx 6mm² + 1Cx4mm² Cu/XLPE/SWA/PVC | material | 158.62 |
| 4Cx 10mm² + 1Cx10mm² Cu/XLPE/PVC | material | 158.62 |
| One way Two gang switch outlet, 230V, 1P, 10A, 60Hz, wall mounted | material | 1882.84 |
| Duplex socket outlet, 230V, 1P, 13A, 60Hz with grounding, wall mounted | material | 1882.84 |
| Industrial socket outlet, 230V, 1P, 30A, 60Hz with grounding, wall mounted | material | 1882.84 |
| 20A, 1P, 60Hz Isolator/disconnect switches IP65 | material | 1882.84 |
| 30A, 3P, 60Hz Isolator/disconnect switches IP65 | material | 1882.84 |
| Surfaced/Wall Mounted Luminaire type (L1), 31 watts LED IP65, 230V, 60Hz, 4200 lumens | material | 2719.66 |
| 24 W Emergency Wall mounted Twin head LED emergency light fitting with battery 90 mins backed-up, 230V, 60Hz, 3148 lumens, IP65; ref. Lighting layout (Type EL) | material | 2719.66 |
| 4 meter double arm galvanized steel Lighting pole with 2x98 watts LED Lighting Luminaire (11994 Lumens) 230V, 60Hz. | material | 2719.66 |
| 50 mm² Bare Copper Conductor | material | 420.79 |
| Grounding Inspection Pit (300mmx300mm) | material | 420.79 |
| 3.00 meter 20mm dia. Grounding Rod | material | 420.79 |
| 8 ways Grounding Busbar with disconnect link | material | 420.79 |
| Telecom Grounding Busbar with disconnect link | material | 420.79 |
| Electrical Manhole (EMH-1) 800mm x 800mm x 800mm concrete hand hole with hot dip galvanized heavy-duty steel cover | material | 390.34 |
| 2x 110 mm UPVC Conduit | material | 390.34 |
| 2x 160 mm UPVC Conduit | material | 390.34 |
| IDF Cabinet 9U (for data &Telephone) | material | 32949.7 |
| Installationof Single data/Telephone outlet | material | 1882.84 |
| Data Switch (24 Port) | material | 28242.6 |
| Fiber optic cable (12 Core single mode). | material | 141.21 |
| 5.0 Megapixel, Fixed bullet IP CCTV camera | material | 42363.9 |
| 2 x 50mm HDPE ducts Bank | material | 376.57 |
| Handholes (800x800x800 mm) | material | 4707.1 |
| Programmable Logic Controller | material | 376568 |
| Process Control Wiring | material | 235355 |
| Float Level switches for alarming incase of Low Low / High High/ HIGH/LOW level conditions . | material | 15167.3 |
| Radar level meter | material | 15167.3 |
| Electro magnetic flow meter on the main Header/Suction pipeline with measuring (DN-250) as per mechanical drawings complete with flanges, metering tube, electrodes, indicators, transmitters, converter/ amplifier Units and all accessories. | material | 15167.3 |
| differential pressure switch for measuring the pressure after and before the Odor fans complete with all accessories . | material | 15167.3 |
| pressure gauge with all accessories based on technical specifications | material | 15167.3 |
| pressure switch for high pressure alarm at the pump discharge pipeline complete with all accessories as per specifications to work in good conditions. | material | 15167.3 |
| H2S online analyzer complete with all accessories as per specifications to work in good conditions | material | 15167.3 |
| NEMA 4X type Analogue, Digital & Motorized Control valve Junction Box terminal blocks as shown on the ICA drawings. | material | 15167.3 |
| Planning Engineer | labor |  |
| QA/QC Engineer | labor |  |
| Consultant Staff | labor |  |
| Draftsman | labor |  |
| Purchaser | labor |  |
| Cost For Eng,Pro and T&C | material |  |

## Schedule

| ID | WBS | Activity | Type | Duration | Start | Finish | Predecessors | Complete | Planned start | Planned finish | Total float | Free float | Calendar | Resources | Old Activity ID | Construction | USERTEXT | Weight 1 | Total Weight % | Mapping Sheet Activity ID |
| --- | --- | --- | --- | --- | --- | --- | --- | --- | --- | --- | --- | --- | --- | --- | --- | --- | --- | --- | --- | --- |
|  | 1 | **Key Milestones** |  |  | 2025-11-24 | 2027-01-14 |  |  |  |  |  |  |  |  |  |  |  |  |  |  |
|  | 1 | **General Milestone** |  |  | 2025-11-24 | 2027-01-14 |  |  |  |  |  |  |  |  |  |  |  |  |  |  |
| JDH4-02-007-MS-1000 |  | Project Commencement Date | milestone | 0d | 2025-11-24 A | 2025-11-24 A |  | 100% |  |  |  |  |  |  | A12350 |  |  |  |  |  |
| JDH4-02-007-MS-1010 |  | Project Completion Date | milestone | 0d | 2027-01-14 | 2027-01-14 | JDH4-02-007-DM-1000 FF, JDH4-02-007-DM-1010 FF, JDH4-02-007-DM-1020 FF, JDH4-02-007-DM-1030 FF, JDH4-02-007-DM-1040 FF, JDH4-02-007-MS-1110 FF, JDH4-02-007-MS-1100 FF, JDH4-02-007-MS-1090 FF, JDH4-02-007-MS-1080 FF, JDH4-02-007-MS-1070 FF, JDH4-02-007-MS-1060 FF, JDH4-02-007-MS-1050 FF, JDH4-02-007-AB-1120 FF |  |  |  | 102d | 0d |  |  | A12360 |  |  |  |  |  |
|  | 2 | **Contractual Milestone** |  |  | 2025-12-23 | 2026-12-30 |  |  |  |  |  |  |  |  |  |  |  |  |  |  |
|  | 1 | **Engineering & Mobilization** |  |  | 2025-12-23 | 2026-07-14 |  |  |  |  |  |  |  |  |  |  |  |  |  |  |
| JDH4-02-007-MS-1020 |  | Completion of Mobilization | milestone | 0d | 2025-12-23 A | 2025-12-23 A | JDH4-02-007-MB-1040 FF, JDH4-02-007-PS-1070 FF, JDH4-02-007-PS-1080 FF, JDH4-02-007-PS-1090 FF, JDH4-02-007-PS-1100 FF, JDH4-02-007-PS-1110 FF | 100% |  |  |  |  |  |  | A12370 | MOB |  |  |  |  |
| JDH4-02-007-MS-1030 |  | Submission of the Work Plan (Baseline Programme) | milestone | 0d | 2025-12-23 A | 2025-12-23 A | JDH4-02-007-PS-1000 FF | 100% |  |  |  |  |  |  | A12380 | MOB |  |  |  |  |
| JDH4-02-007-MS-1040 |  | Submission and Approval of Drawings and Materials | milestone | 0d | 2026-07-14 A | 2026-07-14 A | JDH4-02-007-MA-1270 FF, JDH4-02-007-MA-1650 FF, JDH4-02-007-MA-1290 FF, JDH4-02-007-MA-1230 FF, JDH4-02-007-MA-1260 FF, JDH4-02-007-MA-1210 FF, JDH4-02-007-MA-1450 FF, JDH4-02-007-MA-1470 FF, JDH4-02-007-MA-1190 FF, JDH4-02-007-MA-1430 FF, JDH4-02-007-MA-1670 FF, JDH4-02-007-MA-1130 FF, JDH4-02-007-MA-1330 FF, JDH4-02-007-MA-1170 FF, JDH4-02-007-MA-1150 FF, JDH4-02-007-MA-1390 FF, JDH4-02-007-MA-1410 FF, JDH4-02-007-MA-1350 FF, JDH4-02-007-MA-1520 FF, JDH4-02-007-MA-1370 FF, JDH4-02-007-MA-1550 FF, JDH4-02-007-MA-1590 FF, JDH4-02-007-MA-1610 FF, JDH4-02-007-MA-1630 FF, JDH4-02-007-MA-1010 FF, JDH4-02-007-MA-1030 FF, JDH4-02-007-MA-1050 FF, JDH4-02-007-MA-1070 FF, JDH4-02-007-MA-1090 FF, JDH4-02-007-MA-1110 FF, JDH4-02-007-MA-1510 FF, JDH4-02-007-MA-1500 FF, JDH4-02-007-MA-1570 FF, JDH4-02-007-MA-1700 FF, JDH4-02-007-MA-1710 FF, JDH4-02-007-MA-1730 FF, JDH4-02-007-MA-1820 FF, JDH4-02-007-MA-1760 FF, JDH4-02-007-MA-1830 FF, JDH4-02-007-MA-1770 FF, JDH4-02-007-MA-1790 FF, JDH4-02-007-MA-1930 FF, JDH4-02-007-MA-1870 FF, JDH4-02-007-MA-1890 FF, JDH4-02-007-MA-1910 FF, JDH4-02-007-MA-2070 FF, JDH4-02-007-MA-2050 FF, JDH4-02-007-MA-2010 FF, JDH4-02-007-MA-2030 FF, JDH4-02-007-MA-1990 FF, JDH4-02-007-MA-1950 FF, JDH4-02-007-MA-1970 FF, JDH4-02-007-MA-2110 FF, JDH4-02-007-MA-2150 FF, JDH4-02-007-MA-2090 FF, JDH4-02-007-MA-2130 FF, JDH4-02-007-MA-2190 FF, JDH4-02-007-MA-2170 FF, JDH4-02-007-EN-1420 FF, JDH4-02-007-EN-1430 FF, JDH4-02-007-EN-1620 FF, JDH4-02-007-EN-1630 FF, JDH4-02-007-EN-1640 FF, JDH4-02-007-EN-1650 FF, JDH4-02-007-EN-1660 FF, JDH4-02-007-EN-1670 FF, JDH4-02-007-EN-1320 FF, JDH4-02-007-EN-1330 FF, JDH4-02-007-EN-1340 FF, JDH4-02-007-EN-1350 FF, JDH4-02-007-EN-1360 FF, JDH4-02-007-EN-1370 FF, JDH4-02-007-EN-1380 FF, JDH4-02-007-EN-1390 FF, JDH4-02-007-EN-1400 FF, JDH4-02-007-EN-1680 FF, JDH4-02-007-EN-1690 FF, JDH4-02-007-EN-1710 FF, JDH4-02-007-EN-1700 FF, JDH4-02-007-MA-1790R FF | 100% | 2026-08-04 | 2026-08-04 |  |  | MODON-(6 Day X 8hrs) |  | A12390 | MOB |  |  |  |  |
|  | 2 | **Construction** |  |  | 2026-08-26 | 2026-12-30 |  |  |  |  |  |  |  |  |  |  |  |  |  |  |
| JDH4-02-007-MS-1060 |  | Completion of Sewerage networks | milestone | 0d | 2026-08-26 A | 2026-08-26 A | JDH4-02-007-AB-1090 FF, JDH4-02-007-CN-5240 FF, JDH4-02-007-AB-1020 FF | 100% | 2026-11-02 | 2026-11-02 |  |  |  |  | A12410 | MOB |  |  |  |  |
| JDH4-02-007-MS-1090 |  | Completion of TSE Network | milestone | 0d | 2026-08-30 A | 2026-08-30 A | JDH4-02-007-AB-1080 FF, JDH4-02-007-CN-4530 FF | 100% | 2026-11-07 | 2026-11-07 |  |  |  |  | A12440 | MOB |  |  |  |  |
| JDH4-02-007-MS-1080 |  | Completion of Potable Water Network | milestone | 0d | 2026-09-05 A | 2026-09-05 A | JDH4-02-007-AB-1070 FF, JDH4-02-007-CN-3940 FF, JDH4-02-007-CN-3680 FF | 100% | 2026-12-21 | 2026-12-21 |  |  |  |  | A12430 | MOB |  |  |  |  |
| JDH4-02-007-MS-1050 |  | Completion of Earthworks & Site Grading For Plots | milestone | 0d | 2026-10-20 | 2026-10-20 | JDH4-02-007-CN-1760 FF, JDH4-02-007-CN-1850 FF |  |  |  | 102d | 0d |  |  | A12400 | MOB |  |  |  |  |
| JDH4-02-007-MS-1070 |  | Completion of Road Works | milestone | 0d | 2026-10-20 | 2026-10-20 | JDH4-02-007-CN-2090 FF, JDH4-02-007-CN-2060 FF, JDH4-02-007-CN-2050 FF, JDH4-02-007-CN-2070 FF |  |  |  | 155d | 0d |  |  | A12420 | MOB |  |  |  |  |
| JDH4-02-007-MS-1100 |  | Completion of Electrical Networks | milestone | 0d | 2026-11-19 | 2026-11-19 | JDH4-02-007-MS-1130 FF, JDH4-02-007-MS-1120 FF, JDH4-02-007-AB-1110 FF, JDH4-02-007-CN-2840 FF, JDH4-02-007-CN-2620 FF |  |  |  | 140d | 0d |  |  | A12450 | MOB |  |  |  |  |
| JDH4-02-007-MS-1110 |  | Completion of Entire Project | milestone | 0d | 2026-12-30 | 2026-12-30 | JDH4-02-007-DM-1040 FF, JDH4-02-007-DM-1030 FF, JDH4-02-007-DM-1020 FF, JDH4-02-007-DM-1010 FF, JDH4-02-007-DM-1000 FF |  |  |  | 115d | 13d |  |  | A12460 | MOB |  |  |  |  |
|  | 3 | **Monitoring & Controlling Milestone** |  |  | 2026-06-01 | 2026-06-03 |  |  |  |  |  |  |  |  |  |  |  |  |  |  |
| JDH4-02-007-MS-1120 |  | Approval of Electrical Network Shop DWGs By SEC | milestone | 0d | 2026-06-01 A | 2026-06-01 A | JDH4-02-007-EN-1420 FF, JDH4-02-007-EN-1430 FF, JDH4-02-007-EN-1630 FF, JDH4-02-007-EN-1640 FF, JDH4-02-007-EN-1650 FF, JDH4-02-007-EN-1660 FF, JDH4-02-007-EN-1670 FF, JDH4-02-007-EN-1410 FF | 100% | 2026-09-29 | 2026-09-29 |  |  | MODON-(6 Day X 8hrs) |  | A12470 | MOB |  |  |  |  |
| JDH4-02-007-MS-1130 |  | Approval of Electrical Network Materials By SEC | milestone | 0d | 2026-06-03 A | 2026-06-03 A | JDH4-02-007-MA-1130 FF, JDH4-02-007-MA-1330 FF, JDH4-02-007-MA-1170 FF, JDH4-02-007-MA-1150 FF, JDH4-02-007-MA-1390 FF, JDH4-02-007-MA-1410 FF, JDH4-02-007-MA-1350 FF, JDH4-02-007-MA-1370 FF, JDH4-02-007-MA-1310 FF | 100% | 2026-09-29 | 2026-09-29 |  |  | MODON-(6 Day X 8hrs) |  | A12480 | MOB |  |  |  |  |
|  | 2 | **Mobilization** |  |  | 2025-11-24 | 2026-06-01 |  |  |  |  |  |  |  |  |  |  |  |  |  |  |
|  | 2 | **Site Facilities & Offices** |  |  | 2025-11-24 | 2026-01-10 |  |  |  |  |  |  |  |  |  |  |  |  |  |  |
| JDH4-02-007-MB-1000 |  | Site Layout Plan |  | 5d | 2025-11-24 A | 2025-11-29 A | JDH4-02-007-MS-1000 SS | 100% |  |  |  |  |  | Draftsman [50 h] | CON-LEG101-MB-0900 | MOB | MKH2-02-002-MB-1000 | 0 | 0 | C1000 |
| JDH4-02-007-MB-1010 |  | Clear & Grub for Offices & Access Road |  | 4d | 2025-11-30 A | 2025-12-03 A | JDH4-02-007-MB-1000 | 100% |  |  |  |  |  | Labor [120 h] | CON-LEG101-MB-0910 | MOB | MKH2-02-002-MB-1010 | 0 | 0 | C1010 |
| JDH4-02-007-MB-1020 |  | Construct Site Access Roads |  | 3d | 2025-11-30 A | 2025-12-02 A | JDH4-02-007-MB-1000 | 100% |  |  |  |  |  | Labor [180 h] | CON-LEG101-MB-0915 | MOB | MKH2-02-002-MB-1020 | 0 | 0 | C1020 |
| JDH4-02-007-MB-1040 |  | Construct Site Offices & Storage |  | 17d | 2025-12-03 A | 2025-12-22 A | JDH4-02-007-MB-1020 | 100% |  |  |  |  |  | Labor [1080 h] | CON-LEG101-MB-0925 | MOB | MKH2-02-002-MB-1040 | 0 | 0 | C1040 |
| JDH4-02-007-MB-1030 |  | Construct Temporary Fence |  | 8d | 2025-12-04 A | 2025-12-13 A | JDH4-02-007-MB-1010 | 100% |  |  |  |  |  | Labor [360 h] | CON-LEG101-MB-0920 | MOB | MKH2-02-002-MB-1030 | 0 | 0 | C1030 |
| JDH4-02-007-MB-1060 |  | Install Site Facilities |  | 4d | 2025-12-14 A | 2025-12-17 A | JDH4-02-007-MB-1030 | 100% |  |  |  |  |  | Labor [360 h] | CON-LEG101-MB-0935 | MOB | MKH2-02-002-MB-1050 | 0 | 0 | C1050 |
| JDH4-02-007-MB-1070 |  | Electrical Works & Connections |  | 7d | 2025-12-14 A | 2025-12-21 A | JDH4-02-007-MB-1030 | 100% |  |  |  |  |  | Labor [360 h] | CON-LEG101-MB-0940 | MOB | MKH2-02-002-MB-1060 | 0 | 0 | C1060 |
| JDH4-02-007-MB-1090 |  | Mobilization of Equipment |  | 7d | 2025-12-15 A | 2025-12-22 A | JDH4-02-007-MB-1050 | 100% |  |  |  |  |  | Labor [240 h] | CON-LEG101-MB-0955 | MOB | MKH2-02-002-MB-1100 | 0 | 0 | C1100 |
| JDH4-02-007-MB-1100 |  | Mobilization of Manpower |  | 5d | 2025-12-18 A | 2025-12-23 A | JDH4-02-007-MB-1060 | 100% |  |  |  |  |  | Labor [240 h] | CON-LEG101-MB-1000 | MOB | MKH2-02-002-MB-1090 | 0 | 0 | C1090 |
| JDH4-02-007-MB-1050 |  | Install Project Signs |  | 15d | 2025-12-24 A | 2026-01-10 A | JDH4-02-007-MB-1020 | 100% |  |  |  |  |  | Labor [540 h] | CON-LEG101-MB-0930 | MOB | MKH2-02-002-MB-1080 | 0 | 0 | C1080 |
| JDH4-02-007-MB-1080 |  | Construct Parking Sheds |  | 3d | 2025-12-31 A | 2026-01-03 A | JDH4-02-007-MB-1030 | 100% |  |  |  |  |  | Labor [600 h] | CON-LEG101-MB-0950 | MOB | MKH2-02-002-MB-1070 | 0 | 0 | C1070 |

| ID | WBS | Activity | Duration | Start | Finish | Predecessors | Complete | Planned start | Planned finish | Calendar | Resources | USERTEXT | Weight 1 | Total Weight % | Mapping Sheet Activity ID | Old Activity ID | Construction | Shop Drawings |
| --- | --- | --- | --- | --- | --- | --- | --- | --- | --- | --- | --- | --- | --- | --- | --- | --- | --- | --- |
|  | 4 | **Topographic Survey** |  | 2025-11-24 | 2025-12-03 |  |  |  |  |  |  |  |  |  |  |  |  |  |
| JDH4-02-007-TP-1000 |  | Site Survey Works | 9d | 2025-11-24 A | 2025-12-03 A | JDH4-02-007-MS-1000 SS | 100% |  |  |  | Labor [480 h] | MKH2-02-002-TP-1100 | 0 | 0 | C1520 | CON-LEG101-TP-1330 | MOB |  |
|  | 1 | **Permit's and Authority Approvals** |  | 2025-11-24 | 2026-06-01 |  |  |  |  |  |  |  |  |  |  |  |  |  |
| JDH4-02-007-PA-1000 |  | Excavation & Backfilling Permit Permit | 20d | 2025-11-24 A | 2025-12-16 A | JDH4-02-007-MS-1000 SS | 100% |  |  |  | QA/QC Engineer [480 h] |  | 0 | 0 | C1120 | CON-LEG101-PA-1000 | MOB |  |
| JDH4-02-007-PA-1010 |  | Saudi Electricity Company Permit | 20d | 2026-02-03 A | 2026-06-01 A | JDH4-02-007-MS-1000 SS+238d | 100% | 2026-09-06 | 2026-09-29 |  | QA/QC Engineer [480 h] |  | 0 | 0 | C1130 | CON-LEG101-PA-1010 | MOB |  |
|  | 3 | **Preliminary Submittals** |  | 2025-12-03 | 2026-01-12 |  |  |  |  |  |  |  |  |  |  |  |  |  |
|  | 1 | **Preparation and Submittal by Contractor's** |  | 2025-12-03 | 2026-01-03 |  |  |  |  |  |  |  |  |  |  |  |  |  |
| JDH4-02-007-PS-1000 |  | Preparation and Submittal of Detailed Work Order Programme (baseline schedule) | 16d | 2025-12-03 A | 2025-12-21 A | JDH4-02-007-MB-1020 | 100% |  |  |  | Planning Engineer [180 h] | MKH2-02-002-PS-1010 | 0 | 0 | C1150 | CON-LEG101-PS-1000 | MOB |  |
| JDH4-02-007-PS-1020 |  | Preparation and Submittal of Quality Management Plan | 8d | 2025-12-03 A | 2025-12-11 A | JDH4-02-007-MB-1020 | 100% |  |  |  | QA/QC Engineer [480 h] | MKH2-02-002-PS-1030 | 0 | 0 | C1170 | CON-LEG101-PS-1020 | MOB |  |
| JDH4-02-007-PS-1030 |  | Preparation and Submittal of Safety Management Plan | 8d | 2025-12-03 A | 2025-12-11 A | JDH4-02-007-MB-1020 | 100% |  |  |  | QA/QC Engineer [480 h] | MKH2-02-002-PS-1060 | 0 | 0 | C1200 | CON-LEG101-PS-1030 | MOB |  |
| JDH4-02-007-PS-1040 |  | Preparation and Submittal of Organization Chart | 7d | 2025-12-03 A | 2025-12-10 A | JDH4-02-007-MB-1020 | 100% |  |  |  | QA/QC Engineer [480 h] | MKH2-02-002-PS-1120 | 0 | 0 | C1260 | CON-LEG101-PS-1070 | MOB |  |
| JDH4-02-007-PS-1050 |  | Preparation and Submittal of Communication Plan | 7d | 2025-12-03 A | 2025-12-10 A | JDH4-02-007-MB-1020 | 100% |  |  |  | QA/QC Engineer [480 h] | MKH2-02-002-PS-1130 | 0 | 0 | C1270 | CON-LEG101-PS-1080 | MOB |  |
| JDH4-02-007-PS-1010 |  | Preparation and Submittal of Project Execution Plan | 3d | 2025-12-31 A | 2026-01-03 A | JDH4-02-007-MB-1020 | 100% |  |  |  | QA/QC Engineer [480 h] | MKH2-02-002-PS-1020 | 0 | 0 | C1160 | CON-LEG101-PS-1010 | MOB |  |
|  | 2 | **Approval by the Employer's** |  | 2025-12-11 | 2026-01-12 |  |  |  |  |  |  |  |  |  |  |  |  |  |
| JDH4-02-007-PS-1100 |  | Approval of Organization Chart | 10d | 2025-12-11 A | 2025-12-22 A | JDH4-02-007-PS-1040 | 100% |  |  | MODON-(6 Day X 8hrs) | Consultant Staff [57 h] | MKH2-02-002-PS-1260 | 0 | 0 | C1400 | CON-LEG101-PS-1160 | MOB |  |
| JDH4-02-007-PS-1110 |  | Approval of Comminumcation Plan | 10d | 2025-12-11 A | 2025-12-22 A | JDH4-02-007-PS-1050 | 100% |  |  | MODON-(6 Day X 8hrs) | Consultant Staff [57 h] | MKH2-02-002-PS-1270 | 0 | 0 | C1410 | CON-LEG101-PS-1170 | MOB |  |
| JDH4-02-007-PS-1060 |  | Approval of Detailed Work Order Programme (baseline schedule) | 1d | 2025-12-21 A | 2025-12-21 A | JDH4-02-007-PS-1000 | 100% |  |  | MODON-(6 Day X 8hrs) | Consultant Staff [57 h] | MKH2-02-002-PS-1150 | 0 | 0 | C1290 | CON-LEG101-PS-1090 | MOB |  |
| JDH4-02-007-PS-1090 |  | Approval of Safety Management Plan | 3d | 2025-12-31 A | 2026-01-03 A | JDH4-02-007-PS-1030 | 100% |  |  | MODON-(6 Day X 8hrs) | Consultant Staff [57 h] | MKH2-02-002-PS-1200 | 0 | 0 | C1340 | CON-LEG101-PS-1120 | MOB |  |
| JDH4-02-007-PS-1080 |  | Approval of Quality Management Plan | 2d | 2026-01-11 A | 2026-01-12 A | JDH4-02-007-PS-1020 | 100% |  |  | MODON-(6 Day X 8hrs) | Consultant Staff [57 h] | MKH2-02-002-PS-1170 | 0 | 0 | C1310 | CON-LEG101-PS-1110 | MOB |  |
| JDH4-02-007-PS-1070 |  | Approval of Project Execution Plan | 1d | 2026-01-12 A | 2026-01-12 A | JDH4-02-007-PS-1010 | 100% |  |  | MODON-(6 Day X 8hrs) | Consultant Staff [57 h] | MKH2-02-002-PS-1160 | 0 | 0 | C1300 | CON-LEG101-PS-1100 | MOB |  |
|  | 3 | **Engineering** |  | 2025-11-30 | 2026-07-14 |  |  |  |  |  |  |  |  |  |  |  |  |  |
|  | 2 | **Shop Drawings** |  | 2025-12-04 | 2026-06-01 |  |  |  |  |  |  |  |  |  |  |  |  |  |
|  | 1 | **Shop Drawings Submittal** |  | 2025-12-04 | 2026-02-03 |  |  |  |  |  |  |  |  |  |  |  |  |  |
|  | 1 | **Shop Drawings Submittal for Road Works** |  | 2025-12-04 | 2026-01-03 |  |  |  |  |  |  |  |  |  |  |  |  |  |
| JDH4-02-007-EN-1040 |  | Shop DWG Submittal for Topographic Survey | 8d | 2025-12-04 A | 2025-12-13 A | JDH4-02-007-TP-1000 | 100% |  |  |  | Draftsman [400 h] | MKH2-02-002-EN-1000 | 0 | 0 | D1000 | CON-LEG101-EN-1300 | ENG | SD-RD |
| JDH4-02-007-EN-1050 |  | Shop DWG Submittal for Road Layout Plan | 8d | 2025-12-14 A | 2025-12-22 A | JDH4-02-007-EN-1040 | 100% |  |  |  | Draftsman [400 h] | MKH2-02-002-EN-1010 | 0 | 0 | D1010 | CON-LEG101-EN-1310 | ENG | SD-RD |
| JDH4-02-007-EN-1070 |  | Shop DWG Submittal for Road Setting Out | 8d | 2025-12-14 A | 2025-12-22 A | JDH4-02-007-EN-1040 | 100% |  |  |  | Draftsman [400 h] | MKH2-02-002-EN-1030 | 0 | 0 | D1030 | CON-LEG101-EN-1330 | ENG | SD-RD |
| JDH4-02-007-EN-1080 |  | Shop DWG Submittal for Road Profiles | 8d | 2025-12-14 A | 2025-12-22 A | JDH4-02-007-EN-1040 | 100% |  |  |  | Draftsman [400 h] | MKH2-02-002-EN-1040 | 0 | 0 | D1040 | CON-LEG101-EN-1340 | ENG | SD-RD |
| JDH4-02-007-EN-1090 |  | Shop DWG Submittal for Grading Layout Plan | 8d | 2025-12-14 A | 2025-12-22 A | JDH4-02-007-EN-1040 | 100% |  |  |  | Draftsman [400 h] | MKH2-02-002-EN-1050 | 0 | 0 | D1050 | CON-LEG101-EN-1350 | ENG | SD-RD |
| JDH4-02-007-EN-1100 |  | Shop DWG Submittal for Curb Setting Out Points | 8d | 2025-12-14 A | 2025-12-22 A | JDH4-02-007-EN-1040 | 100% |  |  |  | Draftsman [400 h] | MKH2-02-002-EN-1060 | 0 | 0 | D1060 | CON-LEG101-EN-1360 | ENG | SD-RD |
| JDH4-02-007-EN-1120 |  | Shop DWG Submittal for Standards Details | 8d | 2025-12-14 A | 2025-12-22 A | JDH4-02-007-EN-1040 | 100% |  |  |  | Draftsman [400 h] | MKH2-02-002-EN-1080 | 0 | 0 | D1080 | CON-LEG101-EN-1380 | ENG | SD-RD |
| JDH4-02-007-EN-1060 |  | Shop DWG Submittal for Typical Cross Section | 2d | 2025-12-24 A | 2025-12-26 A | JDH4-02-007-EN-1040 | 100% | 2025-12-24 | 2025-12-25 |  | Draftsman [400 h] | MKH2-02-002-EN-1020 | 0 | 0 | D1020 | CON-LEG101-EN-1320 | ENG | SD-RD |
| JDH4-02-007-EN-1110 |  | Shop DWG Submittal for Signing & Marking Layout Plan | 3d | 2025-12-31 A | 2026-01-03 A | JDH4-02-007-EN-1040 | 100% |  |  |  | Draftsman [400 h] | MKH2-02-002-EN-1070 | 0 | 0 | D1070 | CON-LEG101-EN-1370 | ENG | SD-RD |

| ID | WBS | Activity | Duration | Start | Finish | Predecessors | Complete | Planned start | Planned finish | Resources | USERTEXT | Weight 1 | Total Weight % | Mapping Sheet Activity ID | Old Activity ID | Construction | Shop Drawings |
| --- | --- | --- | --- | --- | --- | --- | --- | --- | --- | --- | --- | --- | --- | --- | --- | --- | --- |
|  | 6 | **Shop Drawings Submittal for Stormwater Network** |  | 2026-01-04 | 2026-01-05 |  |  |  |  |  |  |  |  |  |  |  |  |
| JDH4-02-007-EN-1250 |  | Shop DWG Submittal for Stormwater Plans | 2d | 2026-01-04 A | 2026-01-05 A | JDH4-02-007-TP-1000 | 100% |  |  | Draftsman [400 h] | MKH2-02-002-EN-1210 | 0 | 0 | D1210 | CON-LEG101-EN-1510 | ENG | SD-ST |
| JDH4-02-007-EN-1260 |  | Shop DWG Submittal for Stormwater Profiles | 2d | 2026-01-04 A | 2026-01-05 A | JDH4-02-007-TP-1000 | 100% |  |  | Draftsman [400 h] | MKH2-02-002-EN-1220 | 0 | 0 | D1220 | CON-LEG101-EN-1520 | ENG | SD-ST |
| JDH4-02-007-EN-1270 |  | Shop DWG Submittal for Stormwater Standard Details | 2d | 2026-01-04 A | 2026-01-05 A | JDH4-02-007-TP-1000 | 100% |  |  | Draftsman [400 h] | MKH2-02-002-EN-1230 | 0 | 0 | D1230 | CON-LEG101-EN-1530 | ENG | SD-ST |
|  | 5 | **Shop Drawings Submittal for Sanitary Sewerage** |  | 2026-01-03 | 2026-01-04 |  |  |  |  |  |  |  |  |  |  |  |  |
| JDH4-02-007-EN-1220 |  | Shop DWG Submittal for Sanitary Sewerage Plans | 2d | 2026-01-03 A | 2026-01-04 A | JDH4-02-007-EN-1250 | 100% |  |  | Draftsman [400 h] | MKH2-02-002-EN-1180 | 0 | 0 | D1180 | CON-LEG101-EN-1480 | ENG | SD-SW |
| JDH4-02-007-EN-1230 |  | Shop DWG Submittal for Sanitary Sewerage Profiles | 2d | 2026-01-03 A | 2026-01-04 A | JDH4-02-007-EN-1250 | 100% |  |  | Draftsman [400 h] | MKH2-02-002-EN-1190 | 0 | 0 | D1190 | CON-LEG101-EN-1490 | ENG | SD-SW |
| JDH4-02-007-EN-1240 |  | Shop DWG Submittal for Sanitary Sewerage Standard Details | 2d | 2026-01-03 A | 2026-01-04 A | JDH4-02-007-EN-1250 | 100% |  |  | Draftsman [400 h] | MKH2-02-002-EN-1200 | 0 | 0 | D1200 | CON-LEG101-EN-1500 | ENG | SD-SW |
|  | 4 | **Shop Drawings Submittal for TSE Network** |  | 2026-01-01 | 2026-01-04 |  |  |  |  |  |  |  |  |  |  |  |  |
| JDH4-02-007-EN-1190 |  | Shop DWG Submittal for TSE Network Plans | 2d | 2026-01-01 A | 2026-01-03 A | JDH4-02-007-EN-1220 | 100% |  |  | Draftsman [200 h] | MKH2-02-002-EN-1150 | 0 | 0 | D1150 | CON-LEG101-EN-1450 | ENG | SD-TSE |
| JDH4-02-007-EN-1200 |  | Shop DWG Submittal for TSE Profiles | 2d | 2026-01-03 A | 2026-01-04 A | JDH4-02-007-EN-1220 | 100% |  |  | Draftsman [200 h] | MKH2-02-002-EN-1160 | 0 | 0 | D1160 | CON-LEG101-EN-1460 | ENG | SD-TSE |
| JDH4-02-007-EN-1210 |  | Shop DWG Submittal for TSE Standard Details | 1d | 2026-01-04 A | 2026-01-04 A | JDH4-02-007-EN-1220 | 100% |  |  | Draftsman [200 h] | MKH2-02-002-EN-1170 | 0 | 0 | D1170 | CON-LEG101-EN-1470 | ENG | SD-TSE |
|  | 3 | **Shop Drawings Submittal for Potable Water Network** |  | 2026-01-01 | 2026-01-05 |  |  |  |  |  |  |  |  |  |  |  |  |
| JDH4-02-007-EN-1160 |  | Shop DWG Submittal for Potable Water Plans | 4d | 2026-01-01 A | 2026-01-05 A | JDH4-02-007-EN-1220 | 100% |  |  | Draftsman [200 h] | MKH2-02-002-EN-1120 | 0 | 0 | D1120 | CON-LEG101-EN-1420 | ENG | SD-PW |
| JDH4-02-007-EN-1170 |  | Shop DWG Submittal for Potable Water Profiles | 4d | 2026-01-01 A | 2026-01-05 A | JDH4-02-007-EN-1220 | 100% |  |  | Draftsman [200 h] | MKH2-02-002-EN-1130 | 0 | 0 | D1130 | CON-LEG101-EN-1430 | ENG | SD-PW |
| JDH4-02-007-EN-1180 |  | Shop DWG Submittal for Potable Water Standard Details | 4d | 2026-01-01 A | 2026-01-05 A | JDH4-02-007-EN-1220 | 100% |  |  | Draftsman [200 h] | MKH2-02-002-EN-1140 | 0 | 0 | D1140 | CON-LEG101-EN-1440 | ENG | SD-PW |
|  | 2 | **Shop Drawings Submittal for Electrical Network** |  | 2026-01-03 | 2026-02-03 |  |  |  |  |  |  |  |  |  |  |  |  |
| JDH4-02-007-EN-1140 |  | Shop DWG Submittal for Street Lighting | 3d | 2026-01-03 A | 2026-01-05 A | JDH4-02-007-EN-1180 | 100% |  |  | Draftsman [400 h] | MKH2-02-002-EN-1100 | 0 | 0 | D1100 | CON-LEG101-EN-1400 | ENG | SD-EE |
| JDH4-02-007-EN-1150 |  | Shop DWG Submittal for Low Voltage Network | 3d | 2026-01-03 A | 2026-01-05 A | JDH4-02-007-EN-1210 | 100% |  |  | Draftsman [400 h] | MKH2-02-002-EN-1110 | 0 | 0 | D1110 | CON-LEG101-EN-1410 | ENG | SD-EE |
| JDH4-02-007-EN-1130 |  | Shop DWG Submittal for Medium Voltage Network | 8d | 2026-02-01 A | 2026-02-03 A | JDH4-02-007-EN-1160, JDH4-02-007-EN-1220, JDH4-02-007-EN-1230, JDH4-02-007-EN-1240, JDH4-02-007-EN-1210, JDH4-02-007-EN-1200, JDH4-02-007-EN-1190, JDH4-02-007-EN-1180, JDH4-02-007-EN-1170, JDH4-02-007-PA-1010 | 100% | 2026-09-30 | 2026-10-08 | Draftsman [400 h] | MKH2-02-002-EN-1090 | 0 | 0 | D1090 | CON-LEG101-EN-1390 | ENG | SD-EE |
|  | 8 | **Shop Drawings Submittal for Telecommunications** |  | 2026-01-01 | 2026-01-03 |  |  |  |  |  |  |  |  |  |  |  |  |
| JDH4-02-007-EN-1600 |  | Shop DWG Submittal for Telecommunications Works | 2d | 2026-01-01 A | 2026-01-03 A | JDH4-02-007-EN-1150 | 100% |  |  | Draftsman [400 h] | MKH2-02-002-EN-1320 | 0 | 0 | D3880 | CON-LEG101-EN-3190 | ENG | SD-EE |
|  | 10 | **Shop Drawings Submittal for Earthing System** |  | 2026-01-01 | 2026-01-03 |  |  |  |  |  |  |  |  |  |  |  |  |
| JDH4-02-007-EN-1610 |  | Shop DWG Submittal for Earthing System | 2d | 2026-01-01 A | 2026-01-03 A | JDH4-02-007-EN-1600 | 100% |  |  | Draftsman [400 h] | MKH2-02-002-EN-1320 | 0 | 0 | D3960 | CON-LEG101-EN-3210 | ENG | SD-EE |

| ID | WBS | Activity | Duration | Start | Finish | Predecessors | Complete | Planned start | Planned finish | Calendar | Resources | Mapping Sheet Activity ID | EV | Cost Varince( User Field) | Cost Varince( User Field) % | Old Activity ID | Responsibilities | Construction | Shop Drawings | USERTEXT | Weight 1 | Total Weight % |
| --- | --- | --- | --- | --- | --- | --- | --- | --- | --- | --- | --- | --- | --- | --- | --- | --- | --- | --- | --- | --- | --- | --- |
|  | 11 | **Shop Drawings Submittal for Road Lighting** |  | 2026-01-01 | 2026-01-07 |  |  |  |  |  |  |  |  |  |  |  |  |  |  |  |  |  |
| JDH4-02-007-EN-1000 |  | Shop DWG Submittal for Street Lighting General Arrangement | 6d | 2026-01-01 A | 2026-01-07 A | JDH4-02-007-EN-1140 | 100% |  |  |  | Draftsman [600 h] | C03-E-SL-1560 | 17102.23 | 0 | 0 | CON-LEG101-EN-1260 | EN | ENG | SD-EE |  |  |  |
| JDH4-02-007-EN-1010 |  | Shop DWG Submittal for Street Lighting Network Layout | 6d | 2026-01-01 A | 2026-01-07 A | JDH4-02-007-EN-1000 | 100% |  |  |  | Draftsman [600 h] | C03-E-SL-1570 | 17102.23 | 0 | 0 | CON-LEG101-EN-1270 | EN | ENG | SD-EE |  |  |  |
| JDH4-02-007-EN-1020 |  | Shop DWG Submittal for Street Lighting Details | 6d | 2026-01-01 A | 2026-01-07 A | JDH4-02-007-EN-1010 | 100% |  |  |  | Draftsman [600 h] | C03-E-SL-1580 | 17102.23 | 0 | 0 | CON-LEG101-EN-1280 | EN | ENG | SD-EE |  |  |  |
| JDH4-02-007-EN-1030 |  | Shop DWG Submittal for Street Lighting Single Line Diagram | 6d | 2026-01-01 A | 2026-01-07 A | JDH4-02-007-EN-1020 | 100% |  |  |  | Draftsman [600 h] | C03-E-SL-1590 | 17102.23 | 0 | 0 | CON-LEG101-EN-1290 | EN | ENG | SD-EE |  |  |  |
|  | 7 | **Shop Drawings Submittal for Sewage Lift Station** |  | 2026-01-13 | 2026-01-14 |  |  |  |  |  |  |  |  |  |  |  |  |  |  |  |  |  |
| JDH4-02-007-EN-1280 |  | Shop DWG Submittal for the Sewage Lift Station - Civil Works | 2d | 2026-01-13 A | 2026-01-14 A | JDH4-02-007-EN-1030 | 100% |  |  |  | Draftsman [400 h] | D1270 |  |  |  | CON-LEG101-EN-1540 |  | ENG | SD-SL | MKH2-02-002-EN-1320 | 0 | 0 |
| JDH4-02-007-EN-1290 |  | Shop DWG Submittal for the Sewage Lift Station - Mechanical Works | 2d | 2026-01-13 A | 2026-01-14 A | JDH4-02-007-EN-1280 | 100% |  |  |  | Draftsman [400 h] | D1290 |  |  |  | CON-LEG101-EN-1550 |  | ENG | SD-SL | MKH2-02-002-EN-1340 | 0 | 0 |
| JDH4-02-007-EN-1300 |  | Shop DWG Submittal for the Sewage Lift Station - Electrical Works | 2d | 2026-01-13 A | 2026-01-14 A | JDH4-02-007-EN-1290 | 100% |  |  |  | Draftsman [40 h] |  |  |  |  |  |  | ENG | SD-SL |  |  |  |
| JDH4-02-007-EN-1310 |  | Shop DWG Submittal for the Sewage Lift Station - Finishing Works | 2d | 2026-01-13 A | 2026-01-14 A | JDH4-02-007-EN-1300 | 100% |  |  |  | Draftsman [400 h] | D1300 |  |  |  | CON-LEG101-EN-1560 |  | ENG | SD-SL | MKH2-02-002-EN-1350 | 0 | 0 |
|  | 2 | **Shop Drawings Approval** |  | 2025-12-26 | 2026-06-01 |  |  |  |  |  |  |  |  |  |  |  |  |  |  |  |  |  |
|  | 1 | **Shop Drawings Approval for Road Works** |  | 2025-12-26 | 2026-01-05 |  |  |  |  |  |  |  |  |  |  |  |  |  |  |  |  |  |
| JDH4-02-007-EN-1320 |  | Shop DWG Approval for Topographic Survey | 3d | 2025-12-26 A | 2025-12-29 A | JDH4-02-007-EN-1040 | 100% | 2025-12-27 | 2025-12-29 | MODON-(6 Day X 8hrs) | Consultant Staff [10.5 h] | D1320 |  |  |  | CON-LEG101-EN-1570 |  | ENG | SD-RD | MKH2-02-002-EN-1370 | 0.00114229524671769 | 0.114229524671769 |
| JDH4-02-007-EN-1330 |  | Shop DWG Approval for Road Layout Plan | 3d | 2025-12-26 A | 2025-12-29 A | JDH4-02-007-EN-1050 | 100% | 2025-12-27 | 2025-12-29 | MODON-(6 Day X 8hrs) | Consultant Staff [10.5 h] | D1330 |  |  |  | CON-LEG101-EN-1580 |  | ENG | SD-RD | MKH2-02-002-EN-1380 | 0.00114229524671769 | 0.114229524671769 |
| JDH4-02-007-EN-1340 |  | Shop DWG Approval for Typical Cross Section | 3d | 2025-12-26 A | 2025-12-29 A | JDH4-02-007-EN-1060 | 100% | 2025-12-27 | 2025-12-29 | MODON-(6 Day X 8hrs) | Consultant Staff [10.5 h] | D1340 |  |  |  | CON-LEG101-EN-1590 |  | ENG | SD-RD | MKH2-02-002-EN-1390 | 0.00114229524671769 | 0.114229524671769 |
| JDH4-02-007-EN-1350 |  | Shop DWG Approval for Road Setting Out | 3d | 2025-12-26 A | 2025-12-29 A | JDH4-02-007-EN-1070 | 100% | 2025-12-27 | 2025-12-29 | MODON-(6 Day X 8hrs) | Consultant Staff [10.5 h] | D1350 |  |  |  | CON-LEG101-EN-1600 |  | ENG | SD-RD | MKH2-02-002-EN-1400 | 0.00114229524671769 | 0.114229524671769 |
| JDH4-02-007-EN-1360 |  | Shop DWG Approval for Road Profiles | 3d | 2025-12-26 A | 2025-12-29 A | JDH4-02-007-EN-1080 | 100% | 2025-12-27 | 2025-12-29 | MODON-(6 Day X 8hrs) | Consultant Staff [10.5 h] | D1360 |  |  |  | CON-LEG101-EN-1610 |  | ENG | SD-RD | MKH2-02-002-EN-1410 | 0.00114229524671769 | 0.114229524671769 |
| JDH4-02-007-EN-1370 |  | Shop DWG Approval for Grading Layout Plan | 3d | 2025-12-26 A | 2025-12-29 A | JDH4-02-007-EN-1090 | 100% | 2025-12-27 | 2025-12-29 | MODON-(6 Day X 8hrs) | Consultant Staff [10.5 h] | D1370 |  |  |  | CON-LEG101-EN-1620 |  | ENG | SD-RD | MKH2-02-002-EN-1420 | 0.00114229524671769 | 0.114229524671769 |
| JDH4-02-007-EN-1380 |  | Shop DWG Approval for Curb Setting Out Points | 3d | 2025-12-26 A | 2025-12-29 A | JDH4-02-007-EN-1100 | 100% | 2025-12-27 | 2025-12-29 | MODON-(6 Day X 8hrs) | Consultant Staff [8 h] | D1380 |  |  |  | CON-LEG101-EN-1630 |  | ENG | SD-RD | MKH2-02-002-EN-1430 | 0.00114229524671769 | 0.114229524671769 |
| JDH4-02-007-EN-1400 |  | Shop DWG Approval for Standards Details | 3d | 2025-12-26 A | 2025-12-29 A | JDH4-02-007-EN-1120, JDH4-02-007-EN-1250, JDH4-02-007-EN-1260, JDH4-02-007-EN-1270 | 100% | 2025-12-27 | 2025-12-29 | MODON-(6 Day X 8hrs) | Consultant Staff [10.5 h] | D1400 |  |  |  | CON-LEG101-EN-1650 |  | ENG | SD-RD | MKH2-02-002-EN-1450 | 0.00114229524671769 | 0.114229524671769 |
| JDH4-02-007-EN-1390 |  | Shop DWG Approval for Signing & Marking Layout Plan | 3d | 2026-01-03 A | 2026-01-05 A | JDH4-02-007-EN-1110 | 100% |  |  | MODON-(6 Day X 8hrs) | Consultant Staff [10.5 h] | D1390 |  |  |  | CON-LEG101-EN-1640 |  | ENG | SD-RD | MKH2-02-002-EN-1440 | 0.00114229524671769 | 0.114229524671769 |
|  | 6 | **Shop Drawings Approval for Storm Network** |  | 2026-01-08 | 2026-01-12 |  |  |  |  |  |  |  |  |  |  |  |  |  |  |  |  |  |
| JDH4-02-007-EN-1530 |  | Shop DWG Approval for Stormwater Plans | 4d | 2026-01-08 A | 2026-01-12 A | JDH4-02-007-EN-1250 | 100% |  |  | MODON-(6 Day X 8hrs) | Consultant Staff [10.5 h] | D1530 |  |  |  | CON-LEG101-EN-1780 |  | ENG | SD-ST | MKH2-02-002-EN-1580 | 0.00181721420513818 | 0.181721420513818 |
| JDH4-02-007-EN-1540 |  | Shop DWG Approval for Stormwater Profiles | 4d | 2026-01-08 A | 2026-01-12 A | JDH4-02-007-EN-1260 | 100% |  |  | MODON-(6 Day X 8hrs) | Consultant Staff [10.5 h] | D1540 |  |  |  | CON-LEG101-EN-1790 |  | ENG | SD-ST | MKH2-02-002-EN-1590 | 0.00181721420513818 | 0.181721420513818 |
| JDH4-02-007-EN-1550 |  | Shop DWG Approval for Stormwater Standard Details | 4d | 2026-01-08 A | 2026-01-12 A | JDH4-02-007-EN-1270 | 100% |  |  | MODON-(6 Day X 8hrs) | Consultant Staff [10.5 h] | D1550 |  |  |  | CON-LEG101-EN-1800 |  | ENG | SD-ST | MKH2-02-002-EN-1600 | 0.00181721420513818 | 0.181721420513818 |

| ID | WBS | Activity | Duration | Start | Finish | Predecessors | Complete | Planned start | Planned finish | Calendar | Resources | USERTEXT | Weight 1 | Total Weight % | Mapping Sheet Activity ID | Old Activity ID | Construction | Shop Drawings |
| --- | --- | --- | --- | --- | --- | --- | --- | --- | --- | --- | --- | --- | --- | --- | --- | --- | --- | --- |
|  | 5 | **Shop Drawings Approval for Sanitary Sewerage** |  | 2026-01-08 | 2026-01-12 |  |  |  |  |  |  |  |  |  |  |  |  |  |
| JDH4-02-007-EN-1500 |  | Shop DWG Approval for Sanitary Sewerage Plans | 4d | 2026-01-08 A | 2026-01-12 A | JDH4-02-007-EN-1220 | 100% |  |  | MODON-(6 Day X 8hrs) | Consultant Staff [10.5 h] | MKH2-02-002-EN-1550 | 0.000655862565683969 | 0.0655862565683969 | D1500 | CON-LEG101-EN-1750 | ENG | SD-SW |
| JDH4-02-007-EN-1510 |  | Shop DWG Approval for Sanitary Sewerage Profiles | 4d | 2026-01-08 A | 2026-01-12 A | JDH4-02-007-EN-1230 | 100% |  |  | MODON-(6 Day X 8hrs) | Consultant Staff [10.5 h] | MKH2-02-002-EN-1560 | 0.000655862565683969 | 0.0655862565683969 | D1510 | CON-LEG101-EN-1760 | ENG | SD-SW |
| JDH4-02-007-EN-1520 |  | Shop DWG Approval for Sanitary Sewerage Standard Details | 4d | 2026-01-08 A | 2026-01-12 A | JDH4-02-007-EN-1240 | 100% |  |  | MODON-(6 Day X 8hrs) | Consultant Staff [10.5 h] | MKH2-02-002-EN-1570 | 0.000655862565683969 | 0.0655862565683969 | D1520 | CON-LEG101-EN-1770 | ENG | SD-SW |
|  | 4 | **Shop Drawings Approval for TSE Network** |  | 2026-01-08 | 2026-01-12 |  |  |  |  |  |  |  |  |  |  |  |  |  |
| JDH4-02-007-EN-1470 |  | Shop DWG Approval for TSE Network Plans | 4d | 2026-01-08 A | 2026-01-12 A | JDH4-02-007-EN-1190 | 100% |  |  | MODON-(6 Day X 8hrs) | Consultant Staff [10.5 h] | MKH2-02-002-EN-1520 | 0.00026192432990319 | 0.026192432990319 | D1470 | CON-LEG101-EN-1720 | ENG | SD-TSE |
| JDH4-02-007-EN-1480 |  | Shop DWG Approval for TSE Profiles | 4d | 2026-01-08 A | 2026-01-12 A | JDH4-02-007-EN-1200 | 100% |  |  | MODON-(6 Day X 8hrs) | Consultant Staff [10.5 h] | MKH2-02-002-EN-1530 | 0.00026192432990319 | 0.026192432990319 | D1480 | CON-LEG101-EN-1730 | ENG | SD-TSE |
| JDH4-02-007-EN-1490 |  | Shop DWG Approval for TSE Standard Details | 4d | 2026-01-08 A | 2026-01-12 A | JDH4-02-007-EN-1210, JDH4-02-007-EN-1550 | 100% |  |  | MODON-(6 Day X 8hrs) | Consultant Staff [10.5 h] | MKH2-02-002-EN-1540 | 0.00026192432990319 | 0.026192432990319 | D1490 | CON-LEG101-EN-1740 | ENG | SD-TSE |
|  | 3 | **Shop Drawings Approval for Potable Water Network** |  | 2026-01-08 | 2026-01-12 |  |  |  |  |  |  |  |  |  |  |  |  |  |
| JDH4-02-007-EN-1440 |  | Shop DWG Approval for Potable Water Plans | 4d | 2026-01-08 A | 2026-01-12 A | JDH4-02-007-EN-1160 | 100% |  |  | MODON-(6 Day X 8hrs) | Consultant Staff [10.5 h] | MKH2-02-002-EN-1490 | 0.000402108835962306 | 0.0402108835962306 | D1440 | CON-LEG101-EN-1690 | ENG | SD-PW |
| JDH4-02-007-EN-1450 |  | Shop DWG Approval for Potable Water Profiles | 4d | 2026-01-08 A | 2026-01-12 A | JDH4-02-007-EN-1170 | 100% |  |  | MODON-(6 Day X 8hrs) | Consultant Staff [10.5 h] | MKH2-02-002-EN-1500 | 0.000402108835962306 | 0.0402108835962306 | D1450 | CON-LEG101-EN-1700 | ENG | SD-PW |
| JDH4-02-007-EN-1460 |  | Shop DWG Approval for Potable Water Standard Details | 4d | 2026-01-08 A | 2026-01-12 A | JDH4-02-007-EN-1180 | 100% |  |  | MODON-(6 Day X 8hrs) | Consultant Staff [10.5 h] | MKH2-02-002-EN-1510 | 0.000402108835962306 | 0.0402108835962306 | D1460 | CON-LEG101-EN-1710 | ENG | SD-PW |
|  | 2 | **Shop Drawings Approval for Electrical Network** |  | 2026-01-08 | 2026-06-01 |  |  |  |  |  |  |  |  |  |  |  |  |  |
| JDH4-02-007-EN-1420 |  | Shop DWG Approval for Street Lighting by By SEC | 3d | 2026-01-08 A | 2026-01-11 A | JDH4-02-007-EN-1140 | 100% |  |  | MODON-(6 Day X 8hrs) | Consultant Staff [10.5 h] | MKH2-02-002-EN-1470 | 0.00147340149191714 | 0.147340149191714 | D1420 | CON-LEG101-EN-1670 | ENG | SD-EE |
| JDH4-02-007-EN-1430 |  | Shop DWG Approval for Low Voltage Network By SEC | 3d | 2026-01-08 A | 2026-01-11 A | JDH4-02-007-EN-1150 | 100% |  |  | MODON-(6 Day X 8hrs) | Consultant Staff [10.5 h] | MKH2-02-002-EN-1480 | 0.0014734013779999 | 0.14734013779999 | D1430 | CON-LEG101-EN-1680 | ENG | SD-EE |
| JDH4-02-007-EN-1410 |  | Shop DWG Approval for Medium Voltage Network By SEC | 5d | 2026-02-04 A | 2026-06-01 A | JDH4-02-007-EN-1460, JDH4-02-007-EN-1450, JDH4-02-007-EN-1440, JDH4-02-007-EN-1490, JDH4-02-007-EN-1480, JDH4-02-007-EN-1470, JDH4-02-007-EN-1130, JDH4-02-007-MS-1040 | 100% | 2026-10-10 | 2026-10-14 | MODON-(6 Day X 8hrs) | Consultant Staff [10.5 h] | MKH2-02-002-EN-1460 | 0.00147340149191714 | 0.147340149191714 | D1410 | CON-LEG101-EN-1660 | ENG | SD-EE |
|  | 8 | **Shop Drawings Approval for Telecommunications** |  | 2026-01-03 | 2026-01-04 |  |  |  |  |  |  |  |  |  |  |  |  |  |
| JDH4-02-007-EN-1620 |  | Shop DWG Approval for Telecommunications Works | 2d | 2026-01-03 A | 2026-01-04 A | JDH4-02-007-EN-1600 | 100% |  |  | MODON-(6 Day X 8hrs) | Consultant Staff [10.5 h] | MKH2-02-002-EN-1460 | 0.00147340149191714 | 0.147340149191714 | D4120 | CON-LEG101-EN-3280 | ENG | SD-EE |
|  | 10 | **Shop Drawings Approval for Earthing System** |  | 2026-01-10 | 2026-01-11 |  |  |  |  |  |  |  |  |  |  |  |  |  |
| JDH4-02-007-EN-1630 |  | Shop DWG Approval for Earthing System By SEC | 2d | 2026-01-10 A | 2026-01-11 A | JDH4-02-007-EN-1610 | 100% |  |  | MODON-(6 Day X 8hrs) | Consultant Staff [10.5 h] | MKH2-02-002-EN-1460 | 0.00147340149191714 | 0.147340149191714 | D4180 | CON-LEG101-EN-3300 | ENG | SD-EE |
|  | 11 | **Shop Drawings Approval for Road Lighting** |  | 2026-01-10 | 2026-01-14 |  |  |  |  |  |  |  |  |  |  |  |  |  |
| JDH4-02-007-EN-1640 |  | Shop DWG Approval for Street Lighting General Arrangement By SEC | 5d | 2026-01-10 A | 2026-01-14 A | JDH4-02-007-EN-1000 | 100% |  |  | MODON-(6 Day X 8hrs) | Consultant Staff [10.5 h] | MKH2-02-002-EN-1460 | 0.00147340149191714 | 0.147340149191714 | D4210 | CON-LEG101-EN-3310 | ENG | SD-EE |
| JDH4-02-007-EN-1650 |  | Shop DWG Approval for Street Lighting Network Layout By SEC | 5d | 2026-01-10 A | 2026-01-14 A | JDH4-02-007-EN-1010 | 100% |  |  | MODON-(6 Day X 8hrs) | Consultant Staff [10.5 h] | MKH2-02-002-EN-1470 | 0.00147340149191714 | 0.147340149191714 | D4220 | CON-LEG101-EN-3320 | ENG | SD-EE |
| JDH4-02-007-EN-1660 |  | Shop DWG Approval for Street Lighting Details By SEC | 5d | 2026-01-10 A | 2026-01-14 A | JDH4-02-007-EN-1020 | 100% |  |  | MODON-(6 Day X 8hrs) | Consultant Staff [10.5 h] | MKH2-02-002-EN-1480 | 0.0014734013779999 | 0.14734013779999 | D4230 | CON-LEG101-EN-3330 | ENG | SD-EE |
| JDH4-02-007-EN-1670 |  | Shop DWG Approval for Street Lighting Single Line Diagram By SEC | 5d | 2026-01-10 A | 2026-01-14 A | JDH4-02-007-EN-1030 | 100% |  |  | MODON-(6 Day X 8hrs) | Consultant Staff [10.5 h] | MKH2-02-002-EN-1480 | 0.0014734013779999 | 0.14734013779999 | D4390 | CON-LEG101-EN-3360 | ENG | SD-EE |

| ID | WBS | Activity | Duration | Start | Finish | Predecessors | Complete | Calendar | Resources | USERTEXT | Weight 1 | Total Weight % | Mapping Sheet Activity ID | Old Activity ID | Construction | Shop Drawings |
| --- | --- | --- | --- | --- | --- | --- | --- | --- | --- | --- | --- | --- | --- | --- | --- | --- |
|  | 7 | **Shop Drawings Approval for Sewage Lift Station** |  | 2026-01-08 | 2026-01-11 |  |  |  |  |  |  |  |  |  |  |  |
| JDH4-02-007-EN-1680 |  | Shop DWG Approval for the Sewage Lift Station - Civil Works | 3d | 2026-01-08 A | 2026-01-11 A | JDH4-02-007-EN-1280 | 100% | MODON-(6 Day X 8hrs) | Consultant Staff [5.25 h] | MKH2-02-002-EN-1320 | 0 | 0 | D4440 | CON-LEG101-EN-3410 | ENG | SD-SL |
| JDH4-02-007-EN-1690 |  | Shop DWG Approval for the Sewage Lift Station - Mechanical Works | 3d | 2026-01-08 A | 2026-01-11 A | JDH4-02-007-EN-1290 | 100% | MODON-(6 Day X 8hrs) | Consultant Staff [5.25 h] | MKH2-02-002-EN-1340 | 0 | 0 | D4450 | CON-LEG101-EN-3420 | ENG | SD-SL |
| JDH4-02-007-EN-1700 |  | Shop DWG Approval for the Sewage Lift Station - Electrical Works | 3d | 2026-01-08 A | 2026-01-11 A | JDH4-02-007-EN-1300 | 100% | MODON-(6 Day X 8hrs) | Consultant Staff [40 h] |  |  |  |  |  | ENG | SD-SL |
| JDH4-02-007-EN-1710 |  | Shop DWG Approval for the Sewage Lift Station - Finishing Works | 3d | 2026-01-08 A | 2026-01-11 A | JDH4-02-007-EN-1310 | 100% | MODON-(6 Day X 8hrs) | Consultant Staff [5.25 h] | MKH2-02-002-EN-1350 | 0 | 0 | D4460 | CON-LEG101-EN-3430 | ENG | SD-SL |
|  | 3 | **Method Statements** |  | 2025-11-30 | 2026-01-05 |  |  |  |  |  |  |  |  |  |  |  |
|  | 1 | **Method Statements Submittal** |  | 2025-11-30 | 2026-01-03 |  |  |  |  |  |  |  |  |  |  |  |
| JDH4-02-007-EN-1560 |  | Preparation & Submission of Method Statement for Earthworks | 8d | 2025-11-30 A | 2025-12-08 A | JDH4-02-007-MB-1000 | 100% |  | QA/QC Engineer [64 h] | MKH2-02-002-EN-1740 | 0 | 0 | D1640 | CON-LEG101-EN-1810 | ENG |  |
| JDH4-02-007-EN-1570 |  | Preparation & Submission of Method Statement for Concrete Works | 8d | 2025-11-30 A | 2025-12-08 A | JDH4-02-007-EN-1560 SS | 100% |  | QA/QC Engineer [64 h] | MKH2-02-002-EN-1760 | 0 | 0 | D1650 | CON-LEG101-EN-1820 | ENG |  |
| JDH4-02-007-EN-1580 |  | Preparation & Submission of Method Statement for Waterproofing Works | 15d | 2025-11-30 A | 2025-12-16 A | JDH4-02-007-EN-1570 SS | 100% |  | QA/QC Engineer [32 h] | MKH2-02-002-EN-1770 | 0 | 0 | D1660 | CON-LEG101-EN-1830 | ENG |  |
| JDH4-02-007-EN-1590 |  | Preparation & Submission of Method Statement for Asphalt | 3d | 2025-12-31 A | 2026-01-03 A | JDH4-02-007-EN-1580 SS | 100% |  | QA/QC Engineer [32 h] | MKH2-02-002-EN-1870 | 0 | 0 | D1710 | CON-LEG101-EN-1840 | ENG |  |
|  | 2 | **Method Statements Approval** |  | 2025-12-09 | 2026-01-05 |  |  |  |  |  |  |  |  |  |  |  |
| JDH4-02-007-EN-1720 |  | Approval of Method Statement for Earthworks | 7d | 2025-12-09 A | 2025-12-16 A | JDH4-02-007-EN-1560 | 100% | MODON-(6 Day X 8hrs) | Consultant Staff [5.25 h] | MKH2-02-002-EN-1740 | 0 | 0 | D4530 | CON-LEG101-EN-3440 | ENG |  |
| JDH4-02-007-EN-1730 |  | Approval of Method Statement for Concrete Works | 8d | 2025-12-09 A | 2025-12-17 A | JDH4-02-007-EN-1570 | 100% | MODON-(6 Day X 8hrs) | Consultant Staff [5.25 h] | MKH2-02-002-EN-1760 | 0 | 0 | D4540 | CON-LEG101-EN-3450 | ENG |  |
| JDH4-02-007-EN-1740 |  | Approval of Method Statement for Waterproofing Works | 5d | 2025-12-17 A | 2025-12-22 A | JDH4-02-007-EN-1580 | 100% | MODON-(6 Day X 8hrs) | Consultant Staff [5.25 h] | MKH2-02-002-EN-1770 | 0 | 0 | D4550 | CON-LEG101-EN-3460 | ENG |  |
| JDH4-02-007-EN-1750 |  | Approval of Method Statement for Asphalt | 3d | 2026-01-03 A | 2026-01-05 A | JDH4-02-007-EN-1590 | 100% | MODON-(6 Day X 8hrs) | Consultant Staff [5.25 h] | MKH2-02-002-EN-1870 | 0 | 0 | D4600 | CON-LEG101-EN-3470 | ENG |  |
|  | 3 | **Method Statements Staging Time** |  | 2025-12-17 | 2026-01-05 |  |  |  |  |  |  |  |  |  |  |  |
| JDH4-02-007-EN-1760 |  | Staging Time of Method Statement for Earthworks | 6d | 2025-12-17 A | 2025-12-23 A | JDH4-02-007-EN-1720 | 100% |  | Consultant Staff [5.25 h] | MKH2-02-002-EN-1740 | 0 | 0 | D4530 | CON-LEG101-EN-3520 | ENG |  |
| JDH4-02-007-EN-1770 |  | Staging Time of Method Statement for Concrete Works | 4d | 2025-12-18 A | 2025-12-22 A | JDH4-02-007-EN-1730 | 100% |  | Consultant Staff [5.25 h] | MKH2-02-002-EN-1760 | 0 | 0 | D4540 | CON-LEG101-EN-3530 | ENG |  |
| JDH4-02-007-EN-1780 |  | Staging Time of Method Statement for Waterproofing Works | 5d | 2025-12-31 A | 2026-01-05 A | JDH4-02-007-EN-1740 | 100% |  | Consultant Staff [5.25 h] | MKH2-02-002-EN-1770 | 0 | 0 | D4550 | CON-LEG101-EN-3540 | ENG |  |
| JDH4-02-007-EN-1790 |  | Staging Time of Method Statement for Asphalt | 2d | 2026-01-04 A | 2026-01-05 A | JDH4-02-007-EN-1750 | 100% |  | Consultant Staff [5.25 h] | MKH2-02-002-EN-1870 | 0 | 0 | D4600 | CON-LEG101-EN-3550 | ENG |  |
|  | 4 | **Pre-qualification and Material** |  | 2025-12-04 | 2026-07-14 |  |  |  |  |  |  |  |  |  |  |  |
|  | 2 | **Pre-qualification** |  | 2025-12-04 | 2026-06-09 |  |  |  |  |  |  |  |  |  |  |  |
|  | 1 | **Road Works - Civil** |  | 2025-12-04 | 2026-01-05 |  |  |  |  |  |  |  |  |  |  |  |
|  | 1 | **Steel Reinforcement** |  | 2025-12-04 | 2025-12-16 |  |  |  |  |  |  |  |  |  |  |  |
| JDH4-02-007-SB-1580 |  | Pre-Qualification Submittal for Steel Reinforcement | 5d | 2025-12-04 A | 2025-12-09 A | JDH4-02-007-TP-1000 | 100% |  | QA/QC Engineer [32 h] | MKH2-02-002-SB-1120 | 0 | 0 | D6848 | CON-LEG101-SB-4200 | ENG |  |
| JDH4-02-007-SB-1590 |  | Pre-Qualification Approval for Steel Reinforcement | 6d | 2025-12-10 A | 2025-12-16 A | JDH4-02-007-SB-1580 | 100% | MODON-(6 Day X 8hrs) | Consultant Staff [7.35 h] | MKH2-02-002-SB-1130 | 0 | 0 | D6850 | CON-LEG101-SB-4210 | ENG |  |

| ID | WBS | Activity | Duration | Start | Finish | Predecessors | Complete | Planned start | Planned finish | Calendar | Resources | USERTEXT | Weight 1 | Total Weight % | Mapping Sheet Activity ID | Old Activity ID | Construction |
| --- | --- | --- | --- | --- | --- | --- | --- | --- | --- | --- | --- | --- | --- | --- | --- | --- | --- |
|  | 2 | **Ready Mixed Concrete** |  | 2025-12-10 | 2025-12-22 |  |  |  |  |  |  |  |  |  |  |  |  |
| JDH4-02-007-SB-1600 |  | Pre-Qualification Submittal for Ready Mixed Concrete | 5d | 2025-12-10 A | 2025-12-15 A | JDH4-02-007-SB-1580 | 100% |  |  |  | QA/QC Engineer [32 h] | MKH2-02-002-SB-1120 | 0 | 0 | D6868 | CON-LEG101-SB-4220 | ENG |
| JDH4-02-007-SB-1610 |  | Pre-Qualification Approval for Ready Mixed Concrete | 6d | 2025-12-16 A | 2025-12-22 A | JDH4-02-007-SB-1600 | 100% |  |  | MODON-(6 Day X 8hrs) | Consultant Staff [7.35 h] | MKH2-02-002-SB-1130 | 0 | 0 | D6870 | CON-LEG101-SB-4230 | ENG |
|  | 3 | **Water Proofing** |  | 2025-12-16 | 2025-12-22 |  |  |  |  |  |  |  |  |  |  |  |  |
| JDH4-02-007-SB-1620 |  | Pre-Qualification Submittal for Water Proofing | 5d | 2025-12-16 A | 2025-12-21 A | JDH4-02-007-SB-1600 | 100% |  |  |  | QA/QC Engineer [32 h] | MKH2-02-002-SB-1120 | 0 | 0 | D6888 | CON-LEG101-SB-4240 | ENG |
| JDH4-02-007-SB-1630 |  | Pre-Qualification Approval for Water Proofing | 1d | 2025-12-22 A | 2025-12-22 A | JDH4-02-007-SB-1620 | 100% |  |  | MODON-(6 Day X 8hrs) | Consultant Staff [7.35 h] | MKH2-02-002-SB-1130 | 0 | 0 | D6890 | CON-LEG101-SB-4250 | ENG |
|  | 4 | **Aggregate Base Course** |  | 2025-12-16 | 2025-12-22 |  |  |  |  |  |  |  |  |  |  |  |  |
| JDH4-02-007-SB-1000 |  | Pre-Qualification Submittal for Aggregate Base Cource | 4d | 2025-12-16 A | 2025-12-20 A | JDH4-02-007-SB-1600 | 100% |  |  |  | QA/QC Engineer [32 h] | MKH2-02-002-SB-1120 | 0 | 0 | D2000 | CON-LEG101-SB-1000 | ENG |
| JDH4-02-007-SB-1010 |  | Pre-Qualification Approval for Aggregate Base Cource | 2d | 2025-12-21 A | 2025-12-22 A | JDH4-02-007-SB-1000 | 100% |  |  | MODON-(6 Day X 8hrs) | Consultant Staff [7.35 h] | MKH2-02-002-SB-1130 | 0 | 0 | D2010 | CON-LEG101-SB-1010 | ENG |
|  | 5 | **Bituminous Base & Wearing Course** |  | 2025-12-24 | 2025-12-28 |  |  |  |  |  |  |  |  |  |  |  |  |
| JDH4-02-007-SB-1020 |  | Pre-Qualification Submittal for Bituminous Base & Wearing Cource | 4d | 2025-12-24 A | 2025-12-28 A | JDH4-02-007-SB-1620 | 100% |  |  |  | QA/QC Engineer [32 h] | MKH2-02-002-SB-1160 | 0 | 0 | D2040 | CON-LEG101-SB-1040 | ENG |
| JDH4-02-007-SB-1030 |  | Pre-Qualification Approval for Bituminous & Wearing Cource | 2d | 2025-12-26 A | 2025-12-28 A | JDH4-02-007-SB-1020 | 100% | 2025-12-27 | 2025-12-28 | MODON-(6 Day X 8hrs) | Consultant Staff [7.35 h] | MKH2-02-002-SB-1170 | 0 | 0 | D2050 | CON-LEG101-SB-1050 | ENG |
|  | 7 | **Precast Concrete Kerb** |  | 2025-12-18 | 2025-12-22 |  |  |  |  |  |  |  |  |  |  |  |  |
| JDH4-02-007-SB-1040 |  | Pre-Qualification Submittal for Precast Concrete Kerb | 4d | 2025-12-18 A | 2025-12-22 A | JDH4-02-007-SB-1620 | 100% |  |  |  | QA/QC Engineer [32 h] | MKH2-02-002-SB-1240 | 0 | 0 | D2120 | CON-LEG101-SB-1080 | ENG |
| JDH4-02-007-SB-1050 |  | Pre-Qualification Approval for Precast Concrete Kerb | 4d | 2025-12-18 A | 2025-12-22 A | JDH4-02-007-SB-1040 | 100% |  |  | MODON-(6 Day X 8hrs) | Consultant Staff [7.35 h] | MKH2-02-002-SB-1250 | 0 | 0 | D2130 | CON-LEG101-SB-1090 | ENG |
|  | 8 | **Interlocking Block Pavers** |  | 2025-12-22 | 2025-12-31 |  |  |  |  |  |  |  |  |  |  |  |  |
| JDH4-02-007-SB-1060 |  | Pre-Qualification Submittal for Interlocking Block Pavers | 9d | 2025-12-22 A | 2025-12-31 A | JDH4-02-007-SB-1620 | 100% |  |  |  | QA/QC Engineer [32 h] | MKH2-02-002-SB-1280 | 0 | 0 | D2160 | CON-LEG101-SB-1120 | ENG |
| JDH4-02-007-SB-1070 |  | Pre-Qualification Approval for Interlocking Block Pavers | 1d | 2025-12-22 A | 2025-12-22 A | JDH4-02-007-SB-1060 | 100% |  |  | MODON-(6 Day X 8hrs) | Consultant Staff [7.35 h] | MKH2-02-002-SB-1290 | 0 | 0 | D2170 | CON-LEG101-SB-1130 | ENG |
|  | 9 | **Pavement Markings** |  | 2025-12-22 | 2026-01-05 |  |  |  |  |  |  |  |  |  |  |  |  |
| JDH4-02-007-SB-1080 |  | Pre-Qualification Submittal for Pavement Markings | 9d | 2025-12-22 A | 2025-12-31 A | JDH4-02-007-SB-1060 | 100% |  |  |  | QA/QC Engineer [32 h] | MKH2-02-002-SB-1320 | 0 | 0 | D2200 | CON-LEG101-SB-1160 | ENG |
| JDH4-02-007-SB-1090 |  | Pre-Qualification Approval for Pavement Markings | 3d | 2026-01-03 A | 2026-01-05 A | JDH4-02-007-SB-1080, JDH4-02-007-SB-1010 | 100% |  |  | MODON-(6 Day X 8hrs) | Consultant Staff [7.35 h] | MKH2-02-002-SB-1330 | 0 | 0 | D2210 | CON-LEG101-SB-1170 | ENG |
|  | 10 | **Traffic Signs** |  | 2025-12-22 | 2026-01-05 |  |  |  |  |  |  |  |  |  |  |  |  |
| JDH4-02-007-SB-1100 |  | Pre-Qualification Submittal for Traffic Signs | 9d | 2025-12-22 A | 2025-12-31 A | JDH4-02-007-SB-1080 | 100% |  |  |  | QA/QC Engineer [32 h] | MKH2-02-002-SB-1360 | 0 | 0 | D2240 | CON-LEG101-SB-1200 | ENG |
| JDH4-02-007-SB-1110 |  | Pre-Qualification Approval for Traffic Signs | 3d | 2026-01-03 A | 2026-01-05 A | JDH4-02-007-SB-1100 | 100% |  |  | MODON-(6 Day X 8hrs) | Consultant Staff [7.35 h] | MKH2-02-002-SB-1370 | 0 | 0 | D2250 | CON-LEG101-SB-1210 | ENG |

| ID | WBS | Activity | Duration | Start | Finish | Predecessors | Complete | Calendar | Resources | USERTEXT | Weight 1 | Total Weight % | Mapping Sheet Activity ID | Old Activity ID | Construction |
| --- | --- | --- | --- | --- | --- | --- | --- | --- | --- | --- | --- | --- | --- | --- | --- |
|  | 7 | **Storm Network** |  | 2025-12-04 | 2025-12-31 |  |  |  |  |  |  |  |  |  |  |
|  | 2 | **GRP Pipes** |  | 2025-12-04 | 2025-12-31 |  |  |  |  |  |  |  |  |  |  |
| JDH4-02-007-SB-1260 |  | Pre-Qualification Submittal for GRP Pipe | 24d | 2025-12-04 A | 2025-12-31 A | JDH4-02-007-MB-1010 | 100% |  | QA/QC Engineer [32 h] | MKH2-02-002-SB-1800 | 0 | 0 | D2640 | CON-LEG101-SB-1560 | ENG |
| JDH4-02-007-SB-1270 |  | Pre-Qualification Approval for GRP Pipe | 6d | 2025-12-09 A | 2025-12-15 A | JDH4-02-007-SB-1260 | 100% | MODON-(6 Day X 8hrs) | Consultant Staff [7.35 h] | MKH2-02-002-SB-1810 | 0 | 0 | D2650 | CON-LEG101-SB-1570 | ENG |
|  | 1 | **Catch Basin** |  | 2025-12-04 | 2025-12-31 |  |  |  |  |  |  |  |  |  |  |
| JDH4-02-007-SB-1640 |  | Pre-Qualification Submittal for Catch Basin | 24d | 2025-12-04 A | 2025-12-31 A | JDH4-02-007-MB-1010 | 100% |  | QA/QC Engineer [32 h] | MKH2-02-002-SB-1960 | 0 | 0 | D2680 | CON-LEG101-SB-4315 | ENG |
| JDH4-02-007-SB-1650 |  | Pre-Qualification Approval for Catch Basin | 6d | 2025-12-09 A | 2025-12-15 A | JDH4-02-007-SB-1640 | 100% | MODON-(6 Day X 8hrs) | Consultant Staff [7.35 h] | MKH2-02-002-SB-1970 | 0 | 0 | D2690 | CON-LEG101-SB-4320 | ENG |
|  | 6 | **Inlet Manholes** |  | 2025-12-09 | 2025-12-31 |  |  |  |  |  |  |  |  |  |  |
| JDH4-02-007-SB-1280 |  | Pre-Qualification Submittal for Inlet Manholes | 20d | 2025-12-09 A | 2025-12-31 A | JDH4-02-007-SB-1260 | 100% |  | QA/QC Engineer [32 h] | MKH2-02-002-SB-1960 | 0 | 0 | D2680 | CON-LEG101-SB-1600 | ENG |
| JDH4-02-007-SB-1290 |  | Pre-Qualification Approval for Inlet Manholes | 6d | 2025-12-14 A | 2025-12-20 A | JDH4-02-007-SB-1280 | 100% | MODON-(6 Day X 8hrs) | Consultant Staff [7.35 h] | MKH2-02-002-SB-1970 | 0 | 0 | D2690 | CON-LEG101-SB-1610 | ENG |
|  | 6 | **Sanitary Sewerage** |  | 2025-12-04 | 2025-12-31 |  |  |  |  |  |  |  |  |  |  |
|  | 1 | **GRP Pipes** |  | 2025-12-04 | 2025-12-31 |  |  |  |  |  |  |  |  |  |  |
| JDH4-02-007-SB-1220 |  | Pre-Qualification Submittal for GRP Pipe | 24d | 2025-12-04 A | 2025-12-31 A | JDH4-02-007-TP-1000 | 100% |  | QA/QC Engineer [32 h] | MKH2-02-002-SB-1680 | 0 | 0 | D2520 | CON-LEG101-SB-1440 | ENG |
| JDH4-02-007-SB-1230 |  | Pre-Qualification Approval for GRP Pipe | 6d | 2025-12-08 A | 2025-12-14 A | JDH4-02-007-SB-1220 | 100% | MODON-(6 Day X 8hrs) | Consultant Staff [7.35 h] | MKH2-02-002-SB-1690 | 0 | 0 | D2530 | CON-LEG101-SB-1450 | ENG |
|  | 2 | **Manholes** |  | 2025-12-08 | 2025-12-31 |  |  |  |  |  |  |  |  |  |  |
| JDH4-02-007-SB-1240 |  | Pre-Qualification Submittal for Manholes | 21d | 2025-12-08 A | 2025-12-31 A | JDH4-02-007-SB-1220 | 100% |  | QA/QC Engineer [32 h] | MKH2-02-002-SB-1720 | 0 | 0 | D2560 | CON-LEG101-SB-1480 | ENG |
| JDH4-02-007-SB-1250 |  | Pre-Qualification Approval for Manholes | 6d | 2025-12-11 A | 2025-12-17 A | JDH4-02-007-SB-1240 | 100% | MODON-(6 Day X 8hrs) | Consultant Staff [7.35 h] | MKH2-02-002-SB-1730 | 0 | 0 | D2570 | CON-LEG101-SB-1490 | ENG |
|  | 5 | **TSE Network** |  | 2025-12-04 | 2025-12-31 |  |  |  |  |  |  |  |  |  |  |
|  | 1 | **HDPE Pipe (PN 16)** |  | 2025-12-04 | 2025-12-31 |  |  |  |  |  |  |  |  |  |  |
| JDH4-02-007-SB-1200 |  | Pre-Qualification Submittal for HDPE Pipe (PN 16) | 24d | 2025-12-04 A | 2025-12-31 A | JDH4-02-007-TP-1000 | 100% |  | QA/QC Engineer [32 h] | MKH2-02-002-SB-1640 | 0 | 0 | D2480 | CON-LEG101-SB-1400 | ENG |
| JDH4-02-007-SB-1210 |  | Pre-Qualification Approval for HDPE Pipe (PN 16) | 6d | 2025-12-08 A | 2025-12-14 A | JDH4-02-007-SB-1200 | 100% | MODON-(6 Day X 8hrs) | Consultant Staff [7.35 h] | MKH2-02-002-SB-1650 | 0 | 0 | D2490 | CON-LEG101-SB-1410 | ENG |
|  | 3 | **Valves / Chambers** |  | 2025-12-08 | 2025-12-31 |  |  |  |  |  |  |  |  |  |  |
| JDH4-02-007-SB-1440 |  | Pre-Qualification Submittal for Valves / Chambers | 21d | 2025-12-08 A | 2025-12-31 A | JDH4-02-007-SB-1200 | 100% |  | QA/QC Engineer [32 h] | MKH2-02-002-SB-5560 | 0 | 0 | D3440 | CON-LEG101-SB-2040 | ENG |
| JDH4-02-007-SB-1450 |  | Pre-Qualification Approval for Valves / Chambers | 6d | 2025-12-11 A | 2025-12-17 A | JDH4-02-007-SB-1440 | 100% | MODON-(6 Day X 8hrs) | Consultant Staff [7.35 h] | MKH2-02-002-SB-5570 | 0 | 0 | D3450 | CON-LEG101-SB-2050 | ENG |

| ID | WBS | Activity | Duration | Start | Finish | Predecessors | Complete | Planned start | Planned finish | Calendar | Resources | USERTEXT | Weight 1 | Total Weight % | Mapping Sheet Activity ID | Old Activity ID | Construction |
| --- | --- | --- | --- | --- | --- | --- | --- | --- | --- | --- | --- | --- | --- | --- | --- | --- | --- |
|  | 2 | **Risers** |  | 2025-12-11 | 2025-12-31 |  |  |  |  |  |  |  |  |  |  |  |  |
| JDH4-02-007-SB-1460 |  | Pre-Qualification Submittal for Risers | 18d | 2025-12-11 A | 2025-12-31 A | JDH4-02-007-SB-1440 | 100% |  |  |  | QA/QC Engineer [32 h] | MKH2-02-002-SB-5600 | 0 | 0 | D3480 | CON-LEG101-SB-2080 | ENG |
| JDH4-02-007-SB-1470 |  | Pre-Qualification Approval for Risers | 6d | 2025-12-16 A | 2025-12-22 A | JDH4-02-007-SB-1460 | 100% |  |  | MODON-(6 Day X 8hrs) | Consultant Staff [7.35 h] | MKH2-02-002-SB-5610 | 0 | 0 | D3490 | CON-LEG101-SB-2090 | ENG |
|  | 4 | **Potable Water Network** |  | 2025-12-04 | 2025-12-31 |  |  |  |  |  |  |  |  |  |  |  |  |
|  | 1 | **HDPE Pipe (PN 16)** |  | 2025-12-04 | 2025-12-31 |  |  |  |  |  |  |  |  |  |  |  |  |
| JDH4-02-007-SB-1180 |  | Pre-Qualification Submittal for HDPE Pipe (PN 16) | 24d | 2025-12-04 A | 2025-12-31 A | JDH4-02-007-TP-1000 SS | 100% |  |  |  | QA/QC Engineer [32 h] | MKH2-02-002-SB-1560 | 0 | 0 | D2440 | CON-LEG101-SB-1360 | ENG |
| JDH4-02-007-SB-1190 |  | Pre-Qualification Approval for HDPE Pipe (PN 16) | 6d | 2025-12-09 A | 2025-12-15 A | JDH4-02-007-SB-1180 | 100% |  |  | MODON-(6 Day X 8hrs) | Consultant Staff [7.35 h] | MKH2-02-002-SB-1570 | 0 | 0 | D2450 | CON-LEG101-SB-1370 | ENG |
|  | 3 | **Valves / Chambers** |  | 2025-12-09 | 2025-12-31 |  |  |  |  |  |  |  |  |  |  |  |  |
| JDH4-02-007-SB-1420 |  | Pre-Qualification Submittal for Valves / Chambers | 20d | 2025-12-09 A | 2025-12-31 A | JDH4-02-007-SB-1180 | 100% |  |  |  | QA/QC Engineer [32 h] | MKH2-02-002-SB-5480 | 0 | 0 | D3360 | CON-LEG101-SB-2000 | ENG |
| JDH4-02-007-SB-1430 |  | Pre-Qualification Approval for Valves / Chambers | 6d | 2025-12-14 A | 2025-12-20 A | JDH4-02-007-SB-1420 | 100% |  |  | MODON-(6 Day X 8hrs) | Consultant Staff [7.35 h] | MKH2-02-002-SB-5490 | 0 | 0 | D3370 | CON-LEG101-SB-2010 | ENG |
|  | 2 | **Fire Hydrant** |  | 2025-12-11 | 2025-12-31 |  |  |  |  |  |  |  |  |  |  |  |  |
| JDH4-02-007-SB-1660 |  | Pre-Qualification Submittal for Fire Hydrant | 18d | 2025-12-11 A | 2025-12-31 A | JDH4-02-007-SB-1440 | 100% |  |  |  | QA/QC Engineer [32 h] | MKH2-02-002-SB-5480 | 0 | 0 | D3360 | CON-LEG101-SB-4340 | ENG |
| JDH4-02-007-SB-1670 |  | Pre-Qualification Approval for Fire Hydrant | 5d | 2025-12-15 A | 2025-12-20 A | JDH4-02-007-SB-1660 | 100% |  |  | MODON-(6 Day X 8hrs) | Consultant Staff [7.35 h] | MKH2-02-002-SB-5490 | 0 | 0 | D3370 | CON-LEG101-SB-4345 | ENG |
|  | 3 | **Electrical Network** |  | 2025-12-22 | 2026-06-09 |  |  |  |  |  |  |  |  |  |  |  |  |
|  | 2 | **Pipe for the Duct** |  | 2025-12-22 | 2025-12-31 |  |  |  |  |  |  |  |  |  |  |  |  |
| JDH4-02-007-SB-1120 |  | Pre-Qualification Submittal for Pipe for the Duct | 9d | 2025-12-22 A | 2025-12-31 A | JDH4-02-007-SB-1180 | 100% |  |  |  | QA/QC Engineer [32 h] | MKH2-02-002-SB-1440 | 0 | 0 | D2320 | CON-LEG101-SB-1250 | ENG |
| JDH4-02-007-SB-1130 |  | Pre-Qualification Approval for Pipe for the Duct | 1d | 2025-12-29 A | 2025-12-29 A | JDH4-02-007-SB-1120 | 100% |  |  | MODON-(6 Day X 8hrs) | Consultant Staff [7.35 h] | MKH2-02-002-SB-1450 | 0 | 0 | D2330 | CON-LEG101-SB-1260 | ENG |
|  | 5 | **Low Voltage Cables** |  | 2025-12-22 | 2026-01-05 |  |  |  |  |  |  |  |  |  |  |  |  |
| JDH4-02-007-SB-1320 |  | Pre-Qualification Submittal for Low Voltage Cables | 9d | 2025-12-22 A | 2025-12-31 A | JDH4-02-007-SB-1120 | 100% |  |  |  | QA/QC Engineer [32 h] | MKH2-02-002-SB-5240 | 0 | 0 | D3120 | CON-LEG101-SB-1760 | ENG |
| JDH4-02-007-SB-1330 |  | Pre-Qualification Approval for Low Voltage Cables | 3d | 2026-01-03 A | 2026-01-05 A | JDH4-02-007-SB-1320 | 100% |  |  | MODON-(6 Day X 8hrs) | Consultant Staff [7.35 h] | MKH2-02-002-SB-5250 | 0 | 0 | D3130 | CON-LEG101-SB-1770 | ENG |
|  | 4 | **Earthing System** |  | 2025-12-22 | 2026-01-05 |  |  |  |  |  |  |  |  |  |  |  |  |
| JDH4-02-007-SB-1160 |  | Pre-Qualification Submittal for Earthing System | 9d | 2025-12-22 A | 2025-12-31 A | JDH4-02-007-SB-1320 | 100% |  |  |  | QA/QC Engineer [32 h] | MKH2-02-002-SB-1520 | 0 | 0 | D2400 | CON-LEG101-SB-1320 | ENG |
| JDH4-02-007-SB-1170 |  | Pre-Qualification Approval for Earthing System | 3d | 2026-01-03 A | 2026-01-05 A | JDH4-02-007-SB-1160 | 100% |  |  | MODON-(6 Day X 8hrs) | Consultant Staff [7.35 h] | MKH2-02-002-SB-1530 | 0 | 0 | D2410 | CON-LEG101-SB-1330 | ENG |
|  | 11 | **Medium Voltage Cable** |  | 2026-06-06 | 2026-06-09 |  |  |  |  |  |  |  |  |  |  |  |  |
| JDH4-02-007-SB-1300 |  | Pre-Qualification Submittal for Medium Voltage Cable | 7d | 2026-06-06 A | 2026-06-06 A | JDH4-02-007-SB-1160, JDH4-02-007-EN-1410 | 100% | 2026-08-05 | 2026-08-12 |  | QA/QC Engineer [32 h] | MKH2-02-002-SB-5080 | 0 | 0 | D3000 | CON-LEG101-SB-1640 | ENG |
| JDH4-02-007-SB-1310 |  | Pre-Qualification Approval for Medium Voltage Cable | 3d | 2026-06-07 A | 2026-06-09 A | JDH4-02-007-SB-1300 | 100% | 2026-08-13 | 2026-08-16 | MODON-(6 Day X 8hrs) | Consultant Staff [7.35 h] | MKH2-02-002-SB-5090 | 0 | 0 | D3010 | CON-LEG101-SB-1650 | ENG |

| ID | WBS | Activity | Duration | Start | Finish | Predecessors | Complete | Calendar | Resources | USERTEXT | Weight 1 | Total Weight % | Mapping Sheet Activity ID | Old Activity ID | Construction |
| --- | --- | --- | --- | --- | --- | --- | --- | --- | --- | --- | --- | --- | --- | --- | --- |
|  | 3 | **Low Voltage Distribution Panel** |  | 2025-12-22 | 2026-01-19 |  |  |  |  |  |  |  |  |  |  |
| JDH4-02-007-SB-1140 |  | Pre-Qualification Submittal for Low Voltage Distribution Panel | 9d | 2025-12-22 A | 2025-12-31 A | JDH4-02-007-SB-1160 | 100% |  | QA/QC Engineer [32 h] | MKH2-02-002-SB-1480 | 0 | 0 | D2360 | CON-LEG101-SB-1280 | ENG |
| JDH4-02-007-SB-1150 |  | Pre-Qualification Approval for Low Voltage Distribution Panel | 15d | 2026-01-03 A | 2026-01-19 A | JDH4-02-007-SB-1140 | 100% | MODON-(6 Day X 8hrs) | Consultant Staff [7.35 h] | MKH2-02-002-SB-1490 | 0 | 0 | D2370 | CON-LEG101-SB-1290 | ENG |
|  | 9 | **Unit Sub Station** |  | 2025-12-22 | 2026-01-05 |  |  |  |  |  |  |  |  |  |  |
| JDH4-02-007-SB-1380 |  | Pre-Qualification Submittal for Unit Sub Station | 9d | 2025-12-22 A | 2025-12-31 A | JDH4-02-007-SB-1340 SS, JDH4-02-007-SB-1670 | 100% |  | QA/QC Engineer [32 h] | MKH2-02-002-SB-5400 | 0 | 0 | D3280 | CON-LEG101-SB-1920 | ENG |
| JDH4-02-007-SB-1390 |  | Pre-Qualification Approval for Unit Sub Station | 3d | 2026-01-03 A | 2026-01-05 A | JDH4-02-007-SB-1380 | 100% | MODON-(6 Day X 8hrs) | Consultant Staff [7.35 h] | MKH2-02-002-SB-5410 | 0 | 0 | D3290 | CON-LEG101-SB-1930 | ENG |
|  | 10 | **Ring Main Unit (RMU)** |  | 2025-12-22 | 2026-01-05 |  |  |  |  |  |  |  |  |  |  |
| JDH4-02-007-SB-1400 |  | Pre-Qualification Submittal for Ring main Unit (RMU) | 9d | 2025-12-22 A | 2025-12-31 A | JDH4-02-007-SB-1380 | 100% |  | QA/QC Engineer [32 h] | MKH2-02-002-SB-5440 | 0 | 0 | D3320 | CON-LEG101-SB-1960 | ENG |
| JDH4-02-007-SB-1410 |  | Pre-Qualification Approval for Ring main Unit (RMU) | 3d | 2026-01-03 A | 2026-01-05 A | JDH4-02-007-SB-1400 | 100% | MODON-(6 Day X 8hrs) | Consultant Staff [7.35 h] | MKH2-02-002-SB-5450 | 0 | 0 | D3330 | CON-LEG101-SB-1970 | ENG |
|  | 6 | **Lighting poles** |  | 2025-12-22 | 2026-01-05 |  |  |  |  |  |  |  |  |  |  |
| JDH4-02-007-SB-1340 |  | Pre-Qualification Submittal for Lighting poles | 9d | 2025-12-22 A | 2025-12-31 A | JDH4-02-007-SB-1320 | 100% |  | QA/QC Engineer [32 h] | MKH2-02-002-SB-5280 | 0 | 0 | D3160 | CON-LEG101-SB-1800 | ENG |
| JDH4-02-007-SB-1350 |  | Pre-Qualification Approval for Lighting poles | 3d | 2026-01-03 A | 2026-01-05 A | JDH4-02-007-SB-1340 | 100% | MODON-(6 Day X 8hrs) | Consultant Staff [7.35 h] | MKH2-02-002-SB-5290 | 0 | 0 | D3170 | CON-LEG101-SB-1810 | ENG |
|  | 1 | **Lighting panels/Feeder Pillers** |  | 2025-12-22 | 2026-01-05 |  |  |  |  |  |  |  |  |  |  |
| JDH4-02-007-SB-1520 |  | Pre-Qualification Submittal for Lighting panels/Feeder Pillers | 9d | 2025-12-22 A | 2025-12-31 A | JDH4-02-007-SB-1340 | 100% |  | QA/QC Engineer [32 h] | MKH2-02-002-SB-5280 | 0 | 0 | D4725 | CON-LEG101-SB-2380 | ENG |
| JDH4-02-007-SB-1530 |  | Pre-Qualification Approval for Lighting panels/Feeder Pillers | 3d | 2026-01-03 A | 2026-01-05 A | JDH4-02-007-SB-1520 | 100% | MODON-(6 Day X 8hrs) | Consultant Staff [5.25 h] | MKH2-02-002-SB-5300 | 0 | 0 | D4758 | CON-LEG101-SB-2420 | ENG |
|  | 7 | **Street Lighting Luminaire** |  | 2025-12-22 | 2026-01-05 |  |  |  |  |  |  |  |  |  |  |
| JDH4-02-007-SB-1360 |  | Pre-Qualification Submittal for Street Lighting Luminaire | 9d | 2025-12-22 A | 2025-12-31 A | JDH4-02-007-SB-1340 | 100% |  | QA/QC Engineer [32 h] | MKH2-02-002-SB-5320 | 0 | 0 | D3200 | CON-LEG101-SB-1840 | ENG |
| JDH4-02-007-SB-1370 |  | Pre-Qualification Approval for Street Lighting Luminaire | 3d | 2026-01-03 A | 2026-01-05 A | JDH4-02-007-SB-1360 | 100% | MODON-(6 Day X 8hrs) | Consultant Staff [7.35 h] | MKH2-02-002-SB-5330 | 0 | 0 | D3210 | CON-LEG101-SB-1850 | ENG |
|  | 12 | **Telecommunications** |  | 2025-12-20 | 2025-12-31 |  |  |  |  |  |  |  |  |  |  |
|  | 2 | **Pipe for the Duct** |  | 2025-12-20 | 2025-12-31 |  |  |  |  |  |  |  |  |  |  |
| JDH4-02-007-SB-1550 |  | Pre-Qualification Approval for Pipe for the Duct | 3d | 2025-12-20 A | 2025-12-22 A | JDH4-02-007-SB-1540 | 100% | MODON-(6 Day X 8hrs) | Consultant Staff [7.35 h] | MKH2-02-002-SB-1450 | 0 | 0 | D4790 | CON-LEG101-SB-2450 | ENG |
| JDH4-02-007-SB-1540 |  | Pre-Qualification Submittal for Pipe for the Duct | 9d | 2025-12-22 A | 2025-12-31 A | JDH4-02-007-SB-1360 | 100% |  | QA/QC Engineer [32 h] | MKH2-02-002-SB-1440 | 0 | 0 | D4788 | CON-LEG101-SB-2440 | ENG |
|  | 10 | **Sewage Lift Station** |  | 2025-12-22 | 2026-01-05 |  |  |  |  |  |  |  |  |  |  |
|  | 2 | **Thermal & Moisture Protection** |  | 2025-12-22 | 2026-01-05 |  |  |  |  |  |  |  |  |  |  |
| JDH4-02-007-SB-1490 |  | Pre-Qualification Submittal for Thermal & Moisture Protection | 9d | 2025-12-22 A | 2025-12-31 A | JDH4-02-007-SB-1320 | 100% |  | QA/QC Engineer [32 h] | MKH2-02-002-SB-3040 | 0 | 0 | D3820 | CON-LEG101-SB-2280 | ENG |
| JDH4-02-007-SB-1510 |  | Pre-Qualification Approval for Thermal & Moisture Protection | 3d | 2026-01-03 A | 2026-01-05 A | JDH4-02-007-SB-1490 | 100% | MODON-(6 Day X 8hrs) | Consultant Staff [7.35 h] | MKH2-02-002-SB-3050 | 0 | 0 | D3860 | CON-LEG101-SB-2320 | ENG |

| ID | WBS | Activity | Duration | Start | Finish | Predecessors | Complete | Calendar | Resources | USERTEXT | Weight 1 | Total Weight % | Mapping Sheet Activity ID | Old Activity ID | Construction |
| --- | --- | --- | --- | --- | --- | --- | --- | --- | --- | --- | --- | --- | --- | --- | --- |
|  | 1 | **Metals** |  | 2025-12-22 | 2026-01-05 |  |  |  |  |  |  |  |  |  |  |
| JDH4-02-007-SB-1480 |  | Pre-Qualification Submittal for Metal | 9d | 2025-12-22 A | 2025-12-31 A | JDH4-02-007-SB-1490 | 100% |  | QA/QC Engineer [32 h] | MKH2-02-002-SB-3040 | 0 | 0 | D3800 | CON-LEG101-SB-2260 | ENG |
| JDH4-02-007-SB-1500 |  | Pre-Qualification Approval for Metal | 3d | 2026-01-03 A | 2026-01-05 A | JDH4-02-007-SB-1480 | 100% | MODON-(6 Day X 8hrs) | Consultant Staff [7.35 h] | MKH2-02-002-SB-3050 | 0 | 0 | D3840 | CON-LEG101-SB-2300 | ENG |
|  | 3 | **Pumps** |  | 2025-12-22 | 2026-01-05 |  |  |  |  |  |  |  |  |  |  |
| JDH4-02-007-SB-1560 |  | Pre-Qualification Submittal for pumps | 9d | 2025-12-22 A | 2025-12-31 A | JDH4-02-007-SB-1490 | 100% |  | QA/QC Engineer [32 h] | MKH2-02-002-SB-3040 | 0 | 0 | D5778 | CON-LEG101-SB-3240 | ENG |
| JDH4-02-007-SB-1570 |  | Pre-Qualification Approval for pumps | 3d | 2026-01-03 A | 2026-01-05 A | JDH4-02-007-SB-1560 | 100% | MODON-(6 Day X 8hrs) | Consultant Staff [7.35 h] | MKH2-02-002-SB-3050 | 0 | 0 | D5788 | CON-LEG101-SB-3250 | ENG |
|  | 4 | **Pipes,Fittings & Valves** |  | 2025-12-22 | 2026-01-05 |  |  |  |  |  |  |  |  |  |  |
| JDH4-02-007-SB-1680 |  | Pre-Qualification Submittal for Pipes,Fittings & Valves | 9d | 2025-12-22 A | 2025-12-31 A | JDH4-02-007-SB-1490 | 100% |  | QA/QC Engineer [32 h] | MKH2-02-002-SB-3040 | 0 | 0 | D3800 | CON-LEG101-SB-4350 | ENG |
| JDH4-02-007-SB-1700 |  | Pre-Qualification Approval for Pipes,Fittings & Valves | 3d | 2026-01-03 A | 2026-01-05 A | JDH4-02-007-SB-1680 | 100% | MODON-(6 Day X 8hrs) | Consultant Staff [7.35 h] | MKH2-02-002-SB-3050 | 0 | 0 | D3840 | CON-LEG101-SB-4370 | ENG |
|  | 5 | **Odours scrubbing system** |  | 2025-12-22 | 2026-01-05 |  |  |  |  |  |  |  |  |  |  |
| JDH4-02-007-SB-1690 |  | Pre-Qualification Submittal for Odours Scrubbing System | 9d | 2025-12-22 A | 2025-12-31 A | JDH4-02-007-SB-1490 | 100% |  | QA/QC Engineer [32 h] | MKH2-02-002-SB-3040 | 0 | 0 | D3820 | CON-LEG101-SB-4360 | ENG |
| JDH4-02-007-SB-1710 |  | Pre-Qualification Approval for Odours Scrubbing System | 3d | 2026-01-03 A | 2026-01-05 A | JDH4-02-007-SB-1690 | 100% | MODON-(6 Day X 8hrs) | Consultant Staff [7.35 h] | MKH2-02-002-SB-3050 | 0 | 0 | D3860 | CON-LEG101-SB-4380 | ENG |
|  | 6 | **Crane** |  | 2025-12-22 | 2026-01-05 |  |  |  |  |  |  |  |  |  |  |
| JDH4-02-007-SB-1720 |  | Pre-Qualification Submittal for Crane | 9d | 2025-12-22 A | 2025-12-31 A | JDH4-02-007-SB-1490 | 100% |  | QA/QC Engineer [32 h] | MKH2-02-002-SB-3040 | 0 | 0 | D5778 | CON-LEG101-SB-4390 | ENG |
| JDH4-02-007-SB-1730 |  | Pre-Qualification Approval for Crane | 3d | 2026-01-03 A | 2026-01-05 A | JDH4-02-007-SB-1720 | 100% | MODON-(6 Day X 8hrs) | Consultant Staff [7.35 h] | MKH2-02-002-SB-3050 | 0 | 0 | D5788 | CON-LEG101-SB-4400 | ENG |
|  | 7 | **Air Vents** |  | 2025-12-22 | 2026-01-05 |  |  |  |  |  |  |  |  |  |  |
| JDH4-02-007-SB-1800 |  | Pre-Qualification Submittal for Air Vents | 9d | 2025-12-22 A | 2025-12-31 A | JDH4-02-007-SB-1490 | 100% |  | QA/QC Engineer [32 h] | MKH2-02-002-SB-3040 | 0 | 0 | D3800 | CON-LEG101-SB-4470 | ENG |
| JDH4-02-007-SB-1820 |  | Pre-Qualification Approval for Air Vents | 3d | 2026-01-03 A | 2026-01-05 A | JDH4-02-007-SB-1800 | 100% | MODON-(6 Day X 8hrs) | Consultant Staff [7.35 h] | MKH2-02-002-SB-3050 | 0 | 0 | D3840 | CON-LEG101-SB-4490 | ENG |
|  | 8 | **Screening Container** |  | 2025-12-22 | 2026-01-05 |  |  |  |  |  |  |  |  |  |  |
| JDH4-02-007-SB-1740 |  | Pre-Qualification Submittal for Screening Container | 9d | 2025-12-22 A | 2025-12-31 A | JDH4-02-007-SB-1490 | 100% |  | QA/QC Engineer [32 h] | MKH2-02-002-SB-3040 | 0 | 0 | D3800 | CON-LEG101-SB-4410 | ENG |
| JDH4-02-007-SB-1760 |  | Pre-Qualification Approval for Screening Container | 3d | 2026-01-03 A | 2026-01-05 A | JDH4-02-007-SB-1740 | 100% | MODON-(6 Day X 8hrs) | Consultant Staff [7.35 h] | MKH2-02-002-SB-3050 | 0 | 0 | D3840 | CON-LEG101-SB-4430 | ENG |
|  | 9 | **Baffle Plates** |  | 2025-12-22 | 2026-01-05 |  |  |  |  |  |  |  |  |  |  |
| JDH4-02-007-SB-1810 |  | Pre-Qualification Submittal for Baffle plates | 9d | 2025-12-22 A | 2025-12-31 A | JDH4-02-007-SB-1490 | 100% |  | QA/QC Engineer [32 h] | MKH2-02-002-SB-3040 | 0 | 0 | D3820 | CON-LEG101-SB-4480 | ENG |
| JDH4-02-007-SB-1830 |  | Pre-Qualification Approval for Baffle plates | 3d | 2026-01-03 A | 2026-01-05 A | JDH4-02-007-SB-1810 | 100% | MODON-(6 Day X 8hrs) | Consultant Staff [7.35 h] | MKH2-02-002-SB-3050 | 0 | 0 | D3860 | CON-LEG101-SB-4500 | ENG |

| ID | WBS | Activity | Duration | Start | Finish | Predecessors | Complete | Calendar | Resources | USERTEXT | Weight 1 | Total Weight % | Mapping Sheet Activity ID | Old Activity ID | Construction |
| --- | --- | --- | --- | --- | --- | --- | --- | --- | --- | --- | --- | --- | --- | --- | --- |
|  | 10 | **Anti-Water Hammer Equipment** |  | 2025-12-22 | 2026-01-05 |  |  |  |  |  |  |  |  |  |  |
| JDH4-02-007-SB-1840 |  | Pre-Qualification Submittal for Anti-Water Hammer Equipment | 9d | 2025-12-22 A | 2025-12-31 A | JDH4-02-007-SB-1490 | 100% |  | QA/QC Engineer [32 h] | MKH2-02-002-SB-3040 | 0 | 0 | D5778 | CON-LEG101-SB-4510 | ENG |
| JDH4-02-007-SB-1850 |  | Pre-Qualification Approval for Anti-Water Hammer Equipment | 3d | 2026-01-03 A | 2026-01-05 A | JDH4-02-007-SB-1840 | 100% | MODON-(6 Day X 8hrs) | Consultant Staff [7.35 h] | MKH2-02-002-SB-3050 | 0 | 0 | D5788 | CON-LEG101-SB-4520 | ENG |
|  | 11 | **Air Conditioning and Ventilation** |  | 2025-12-22 | 2026-01-05 |  |  |  |  |  |  |  |  |  |  |
| JDH4-02-007-SB-1750 |  | Pre-Qualification Submittal for Air Conditioning and Ventilation | 9d | 2025-12-22 A | 2025-12-31 A | JDH4-02-007-SB-1490 | 100% |  | QA/QC Engineer [32 h] | MKH2-02-002-SB-3040 | 0 | 0 | D3820 | CON-LEG101-SB-4420 | ENG |
| JDH4-02-007-SB-1770 |  | Pre-Qualification Approval for Air Conditioning and Ventilation | 3d | 2026-01-03 A | 2026-01-05 A | JDH4-02-007-SB-1750 | 100% | MODON-(6 Day X 8hrs) | Consultant Staff [7.35 h] | MKH2-02-002-SB-3050 | 0 | 0 | D3860 | CON-LEG101-SB-4440 | ENG |
|  | 12 | **Fuel System** |  | 2025-12-22 | 2026-01-05 |  |  |  |  |  |  |  |  |  |  |
| JDH4-02-007-SB-1780 |  | Pre-Qualification Submittal for Fuel System | 9d | 2025-12-22 A | 2025-12-31 A | JDH4-02-007-SB-1490 | 100% |  | QA/QC Engineer [32 h] | MKH2-02-002-SB-3040 | 0 | 0 | D5778 | CON-LEG101-SB-4450 | ENG |
| JDH4-02-007-SB-1790 |  | Pre-Qualification Approval for Fuel System | 3d | 2026-01-03 A | 2026-01-05 A | JDH4-02-007-SB-1780 | 100% | MODON-(6 Day X 8hrs) | Consultant Staff [7.35 h] | MKH2-02-002-SB-3050 | 0 | 0 | D5788 | CON-LEG101-SB-4460 | ENG |
|  | 13 | **Fire Fighting System** |  | 2025-12-22 | 2026-01-05 |  |  |  |  |  |  |  |  |  |  |
| JDH4-02-007-SB-1920 |  | Pre-Qualification Submittal for Fire Fighting System | 9d | 2025-12-22 A | 2025-12-31 A | JDH4-02-007-SB-1490 | 100% |  | QA/QC Engineer [32 h] | MKH2-02-002-SB-3040 | 0 | 0 | D3800 | CON-LEG101-SB-4590 | ENG |
| JDH4-02-007-SB-1930 |  | Pre-Qualification Approval for Fire Fighting System | 3d | 2026-01-03 A | 2026-01-05 A | JDH4-02-007-SB-1920 | 100% | MODON-(6 Day X 8hrs) | Consultant Staff [7.35 h] | MKH2-02-002-SB-3050 | 0 | 0 | D3840 | CON-LEG101-SB-4600 | ENG |
|  | 14 | **Main Distribution Board /MCC panels** |  | 2025-12-22 | 2026-01-05 |  |  |  |  |  |  |  |  |  |  |
| JDH4-02-007-SB-1860 |  | Pre-Qualification Submittal for Main Distribution Board/MCC Panels | 9d | 2025-12-22 A | 2025-12-31 A | JDH4-02-007-SB-1490 | 100% |  | QA/QC Engineer [32 h] | MKH2-02-002-SB-3040 | 0 | 0 | D3800 | CON-LEG101-SB-4530 | ENG |
| JDH4-02-007-SB-1870 |  | Pre-Qualification Approval for Main Distribution Board/MCC Panels | 3d | 2026-01-03 A | 2026-01-05 A | JDH4-02-007-SB-1860 | 100% | MODON-(6 Day X 8hrs) | Consultant Staff [7.35 h] | MKH2-02-002-SB-3050 | 0 | 0 | D3840 | CON-LEG101-SB-4540 | ENG |
|  | 15 | **Final Panel boards** |  | 2025-12-22 | 2026-01-05 |  |  |  |  |  |  |  |  |  |  |
| JDH4-02-007-SB-1880 |  | Pre-Qualification Submittal for Final Panel Boards | 9d | 2025-12-22 A | 2025-12-31 A | JDH4-02-007-SB-1490 | 100% |  | QA/QC Engineer [32 h] | MKH2-02-002-SB-3040 | 0 | 0 | D3820 | CON-LEG101-SB-4550 | ENG |
| JDH4-02-007-SB-1890 |  | Pre-Qualification Approval for Final Panel Boards | 3d | 2026-01-03 A | 2026-01-05 A | JDH4-02-007-SB-1880 | 100% | MODON-(6 Day X 8hrs) | Consultant Staff [7.35 h] | MKH2-02-002-SB-3050 | 0 | 0 | D3860 | CON-LEG101-SB-4560 | ENG |
|  | 16 | **Local Control Panel/ Monitoring Control Panel** |  | 2025-12-22 | 2026-01-05 |  |  |  |  |  |  |  |  |  |  |
| JDH4-02-007-SB-1900 |  | Pre-Qualification Submittal for Local Control Panel / Monitoring Control Panel | 9d | 2025-12-22 A | 2025-12-31 A | JDH4-02-007-SB-1490 | 100% |  | QA/QC Engineer [32 h] | MKH2-02-002-SB-3040 | 0 | 0 | D3800 | CON-LEG101-SB-4570 | ENG |
| JDH4-02-007-SB-1910 |  | Pre-Qualification Approval for Local Control Panel / Monitoring Control Panel | 3d | 2026-01-03 A | 2026-01-05 A | JDH4-02-007-SB-1900 | 100% | MODON-(6 Day X 8hrs) | Consultant Staff [7.35 h] | MKH2-02-002-SB-3050 | 0 | 0 | D3840 | CON-LEG101-SB-4580 | ENG |
|  | 17 | **Engine Generators** |  | 2025-12-22 | 2026-01-05 |  |  |  |  |  |  |  |  |  |  |
| JDH4-02-007-SB-2060 |  | Pre-Qualification Submittal for Engine Generators | 9d | 2025-12-22 A | 2025-12-31 A | JDH4-02-007-SB-1490 | 100% |  | QA/QC Engineer [32 h] | MKH2-02-002-SB-3040 | 0 | 0 | D3800 | CON-LEG101-SB-4730 | ENG |
| JDH4-02-007-SB-2070 |  | Pre-Qualification Approval for Engine Generators | 3d | 2026-01-03 A | 2026-01-05 A | JDH4-02-007-SB-2060 | 100% | MODON-(6 Day X 8hrs) | Consultant Staff [7.35 h] | MKH2-02-002-SB-3050 | 0 | 0 | D3840 | CON-LEG101-SB-4740 | ENG |

| ID | WBS | Activity | Duration | Start | Finish | Predecessors | Complete | Calendar | Resources | USERTEXT | Weight 1 | Total Weight % | Mapping Sheet Activity ID | Old Activity ID | Construction |
| --- | --- | --- | --- | --- | --- | --- | --- | --- | --- | --- | --- | --- | --- | --- | --- |
|  | 18 | **Standby Diesel Generator** |  | 2025-12-22 | 2026-01-05 |  |  |  |  |  |  |  |  |  |  |
| JDH4-02-007-SB-2040 |  | Pre-Qualification Submittal for Standby Diesel Generator | 9d | 2025-12-22 A | 2025-12-31 A | JDH4-02-007-SB-1490 | 100% |  | QA/QC Engineer [32 h] | MKH2-02-002-SB-3040 | 0 | 0 | D3800 | CON-LEG101-SB-4710 | ENG |
| JDH4-02-007-SB-2050 |  | Pre-Qualification Approval for Standby Diesel Generator | 3d | 2026-01-03 A | 2026-01-05 A | JDH4-02-007-SB-2040 | 100% | MODON-(6 Day X 8hrs) | Consultant Staff [7.35 h] | MKH2-02-002-SB-3050 | 0 | 0 | D3840 | CON-LEG101-SB-4720 | ENG |
|  | 19 | **Power Factor Correction Capacitor Bank** |  | 2025-12-22 | 2026-01-05 |  |  |  |  |  |  |  |  |  |  |
| JDH4-02-007-SB-2000 |  | Pre-Qualification Submittal for Power Factor correction Capacitor Bank | 9d | 2025-12-22 A | 2025-12-31 A | JDH4-02-007-SB-2040 | 100% |  | QA/QC Engineer [32 h] | MKH2-02-002-SB-3040 | 0 | 0 | D3820 | CON-LEG101-SB-4670 | ENG |
| JDH4-02-007-SB-2010 |  | Pre-Qualification Approval for Power Factor correction Capacitor Bank | 3d | 2026-01-03 A | 2026-01-05 A | JDH4-02-007-SB-2000 | 100% | MODON-(6 Day X 8hrs) | Consultant Staff [7.35 h] | MKH2-02-002-SB-3050 | 0 | 0 | D3860 | CON-LEG101-SB-4680 | ENG |
|  | 20 | **Low-Voltage Electrical Power Conductors and Cables** |  | 2025-12-22 | 2026-01-05 |  |  |  |  |  |  |  |  |  |  |
| JDH4-02-007-SB-2020 |  | Pre-Qualification Submittal for Low Voltage Electrical Power Conductors & Cables | 9d | 2025-12-22 A | 2025-12-31 A | JDH4-02-007-SB-2040 | 100% |  | QA/QC Engineer [32 h] | MKH2-02-002-SB-3040 | 0 | 0 | D5778 | CON-LEG101-SB-4690 | ENG |
| JDH4-02-007-SB-2030 |  | Pre-Qualification Approval for Low Voltage Electrical Power Conductors & Cables | 3d | 2026-01-03 A | 2026-01-05 A | JDH4-02-007-SB-2020 | 100% | MODON-(6 Day X 8hrs) | Consultant Staff [7.35 h] | MKH2-02-002-SB-3050 | 0 | 0 | D5788 | CON-LEG101-SB-4700 | ENG |
|  | 21 | **Low Voltage Feeder Cable** |  | 2025-12-22 | 2026-01-05 |  |  |  |  |  |  |  |  |  |  |
| JDH4-02-007-SB-1980 |  | Pre-Qualification Submittal for Low Voltage Feeder Cable | 9d | 2025-12-22 A | 2025-12-31 A | JDH4-02-007-SB-2040 | 100% |  | QA/QC Engineer [32 h] | MKH2-02-002-SB-3040 | 0 | 0 | D3800 | CON-LEG101-SB-4650 | ENG |
| JDH4-02-007-SB-1990 |  | Pre-Qualification Approval for Low Voltage Feeder Cable | 3d | 2026-01-03 A | 2026-01-05 A | JDH4-02-007-SB-1980 | 100% | MODON-(6 Day X 8hrs) | Consultant Staff [7.35 h] | MKH2-02-002-SB-3050 | 0 | 0 | D3840 | CON-LEG101-SB-4660 | ENG |
|  | 22 | **Wiring Devices** |  | 2025-12-22 | 2026-01-05 |  |  |  |  |  |  |  |  |  |  |
| JDH4-02-007-SB-1940 |  | Pre-Qualification Submittal for Wiring Devices | 9d | 2025-12-22 A | 2025-12-31 A | JDH4-02-007-SB-2040 | 100% |  | QA/QC Engineer [32 h] | MKH2-02-002-SB-3040 | 0 | 0 | D3820 | CON-LEG101-SB-4610 | ENG |
| JDH4-02-007-SB-1950 |  | Pre-Qualification Approval for Wiring Devices | 3d | 2026-01-03 A | 2026-01-05 A | JDH4-02-007-SB-1940 | 100% | MODON-(6 Day X 8hrs) | Consultant Staff [7.35 h] | MKH2-02-002-SB-3050 | 0 | 0 | D3860 | CON-LEG101-SB-4620 | ENG |
|  | 23 | **Enclosed Switches and Circuit Breakers** |  | 2025-12-22 | 2026-01-05 |  |  |  |  |  |  |  |  |  |  |
| JDH4-02-007-SB-1960 |  | Pre-Qualification Submittal for Enclosed Switches and Circuit Breakers | 9d | 2025-12-22 A | 2025-12-31 A | JDH4-02-007-SB-2040 | 100% |  | QA/QC Engineer [32 h] | MKH2-02-002-SB-3040 | 0 | 0 | D5778 | CON-LEG101-SB-4630 | ENG |
| JDH4-02-007-SB-1970 |  | Pre-Qualification Approval for Enclosed Switches and Circuit Breakers | 3d | 2026-01-03 A | 2026-01-05 A | JDH4-02-007-SB-1960 | 100% | MODON-(6 Day X 8hrs) | Consultant Staff [7.35 h] | MKH2-02-002-SB-3050 | 0 | 0 | D5788 | CON-LEG101-SB-4640 | ENG |
|  | 24 | **Raceways for Electrical Systems** |  | 2025-12-22 | 2026-01-05 |  |  |  |  |  |  |  |  |  |  |
| JDH4-02-007-SB-2100 |  | Pre-Qualification Submittal for Raceways for Electrical System | 9d | 2025-12-22 A | 2025-12-31 A | JDH4-02-007-SB-1960 SS | 100% |  | QA/QC Engineer [32 h] | MKH2-02-002-SB-3040 | 0 | 0 | D3800 | CON-LEG101-SB-4770 | ENG |
| JDH4-02-007-SB-2110 |  | Pre-Qualification Approval for Raceways for Electrical System | 3d | 2026-01-03 A | 2026-01-05 A | JDH4-02-007-SB-2100 | 100% | MODON-(6 Day X 8hrs) | Consultant Staff [7.35 h] | MKH2-02-002-SB-3050 | 0 | 0 | D3840 | CON-LEG101-SB-4780 | ENG |
|  | 25 | **Electrical Manholes** |  | 2025-12-22 | 2026-01-05 |  |  |  |  |  |  |  |  |  |  |
| JDH4-02-007-SB-2140 |  | Pre-Qualification Submittal for Electrical Manholes | 9d | 2025-12-22 A | 2025-12-31 A | JDH4-02-007-SB-2040 | 100% |  | QA/QC Engineer [32 h] | MKH2-02-002-SB-3040 | 0 | 0 | D5778 | CON-LEG101-SB-4810 | ENG |
| JDH4-02-007-SB-2150 |  | Pre-Qualification Approval for Electrical Manholes | 3d | 2026-01-03 A | 2026-01-05 A | JDH4-02-007-SB-2140 | 100% | MODON-(6 Day X 8hrs) | Consultant Staff [7.35 h] | MKH2-02-002-SB-3050 | 0 | 0 | D5788 | CON-LEG101-SB-4820 | ENG |

| ID | WBS | Activity | Duration | Start | Finish | Predecessors | Complete | Calendar | Resources | Cost | Actual cost | USERTEXT | Weight 1 | Total Weight % | Mapping Sheet Activity ID | Old Activity ID | Construction |
| --- | --- | --- | --- | --- | --- | --- | --- | --- | --- | --- | --- | --- | --- | --- | --- | --- | --- |
|  | 27 | **Security System (CCTV System)** |  | 2025-12-22 | 2026-01-05 |  |  |  |  |  |  |  |  |  |  |  |  |
| JDH4-02-007-SB-2080 |  | Pre-Qualification Submittal for Security System (CCTV System) | 9d | 2025-12-22 A | 2025-12-31 A | JDH4-02-007-SB-2040 | 100% |  | QA/QC Engineer [32 h] |  |  | MKH2-02-002-SB-3040 | 0 | 0 | D3820 | CON-LEG101-SB-4750 | ENG |
| JDH4-02-007-SB-2090 |  | Pre-Qualification Approval for Security System (CCTV System) | 3d | 2026-01-03 A | 2026-01-05 A | JDH4-02-007-SB-2080 | 100% | MODON-(6 Day X 8hrs) | Consultant Staff [7.35 h] |  |  | MKH2-02-002-SB-3050 | 0 | 0 | D3860 | CON-LEG101-SB-4760 | ENG |
|  | 26 | **ICT (Data& telephone System)** |  | 2025-12-22 | 2026-01-05 |  |  |  |  |  |  |  |  |  |  |  |  |
| JDH4-02-007-SB-2120 |  | Pre-Qualification Submittal for ICT (Data & Telephone System) | 9d | 2025-12-22 A | 2025-12-31 A | JDH4-02-007-SB-2040 | 100% |  | QA/QC Engineer [32 h] |  |  | MKH2-02-002-SB-3040 | 0 | 0 | D3800 | CON-LEG101-SB-4790 | ENG |
| JDH4-02-007-SB-2130 |  | Pre-Qualification Approval for ICT (Data & Telephone System) | 3d | 2026-01-03 A | 2026-01-05 A | JDH4-02-007-SB-2120 | 100% | MODON-(6 Day X 8hrs) | Consultant Staff [7.35 h] |  |  | MKH2-02-002-SB-3050 | 0 | 0 | D3840 | CON-LEG101-SB-4800 | ENG |
|  | 28 | **Programmable Logic Controllers** |  | 2025-12-22 | 2026-01-05 |  |  |  |  |  |  |  |  |  |  |  |  |
| JDH4-02-007-SB-2200 |  | Pre-Qualification Submittal for Programmable Logic Controllers | 9d | 2025-12-22 A | 2025-12-31 A | JDH4-02-007-SB-2040 | 100% |  | QA/QC Engineer [32 h] |  |  | MKH2-02-002-SB-3040 | 0 | 0 | D5778 | CON-LEG101-SB-4890 | ENG |
| JDH4-02-007-SB-2210 |  | Pre-Qualification Approval for Programmable Logic Controllers | 3d | 2026-01-03 A | 2026-01-05 A | JDH4-02-007-SB-2200 | 100% | MODON-(6 Day X 8hrs) | Consultant Staff [7.35 h] |  |  | MKH2-02-002-SB-3050 | 0 | 0 | D5788 | CON-LEG101-SB-4900 | ENG |
|  | 29 | **Process Control Wiring** |  | 2025-12-22 | 2026-01-05 |  |  |  |  |  |  |  |  |  |  |  |  |
| JDH4-02-007-SB-2180 |  | Pre-Qualification Submittal for Process Control Wiring | 9d | 2025-12-22 A | 2025-12-31 A | JDH4-02-007-SB-2200 SS | 100% |  | QA/QC Engineer [32 h] |  |  | MKH2-02-002-SB-3040 | 0 | 0 | D3800 | CON-LEG101-SB-4870 | ENG |
| JDH4-02-007-SB-2190 |  | Pre-Qualification Approval for Process Control Wiring | 3d | 2026-01-03 A | 2026-01-05 A | JDH4-02-007-SB-2180 | 100% | MODON-(6 Day X 8hrs) | Consultant Staff [7.35 h] |  |  | MKH2-02-002-SB-3050 | 0 | 0 | D3840 | CON-LEG101-SB-4880 | ENG |
|  | 30 | **Instrumentation for Process Systems** |  | 2025-12-22 | 2026-01-05 |  |  |  |  |  |  |  |  |  |  |  |  |
| JDH4-02-007-SB-2160 |  | Pre-Qualification Submittal for Instrumentation Control Wiring | 9d | 2025-12-22 A | 2025-12-31 A | JDH4-02-007-SB-2180 SS | 100% |  | QA/QC Engineer [32 h] |  |  | MKH2-02-002-SB-3040 | 0 | 0 | D3820 | CON-LEG101-SB-4830 | ENG |
| JDH4-02-007-SB-2170 |  | Pre-Qualification Approval for Instrumentation Control Wiring | 3d | 2026-01-03 A | 2026-01-05 A | JDH4-02-007-SB-2160 | 100% | MODON-(6 Day X 8hrs) | Consultant Staff [7.35 h] |  |  | MKH2-02-002-SB-3050 | 0 | 0 | D3860 | CON-LEG101-SB-4840 | ENG |
|  | 3 | **Material Submittal & Approval** |  | 2025-12-24 | 2026-07-14 |  |  |  |  |  |  |  |  |  |  |  |  |
|  | 1 | **Road Works - Civil** |  | 2025-12-24 | 2026-01-11 |  |  |  |  |  |  |  |  |  |  |  |  |
|  | 1 | **Steel Reinforcement** |  | 2025-12-24 | 2025-12-29 |  |  |  |  |  |  |  |  |  |  |  |  |
| JDH4-02-007-MA-1580 |  | Material Submittal for Steel Reinforcement | 5d | 2025-12-24 A | 2025-12-29 A | JDH4-02-007-SB-1590 | 100% |  | QA/QC Engineer [32 h] |  |  | MKH2-02-002-SB-1120 | 0 | 0 | D6848 | CON-LEG101-SB-5560 | ENG |
| JDH4-02-007-MA-1590 |  | Material Approval for Steel Reinforcement | 5d | 2025-12-24 A | 2025-12-29 A | JDH4-02-007-MA-1580 | 100% | MODON-(6 Day X 8hrs) | Cost For Eng,Pro and T&C [7.35]; Consultant Staff [7.35 h] | 28,182.47 | 28,182.47 | MKH2-02-002-SB-1130 | 0 | 0 | D6850 | CON-LEG101-SB-5565 | ENG |
|  | 2 | **Ready Mixed Concrete** |  | 2025-12-24 | 2025-12-29 |  |  |  |  |  |  |  |  |  |  |  |  |
| JDH4-02-007-MA-1600 |  | Material Submittal for Ready Mixed Concrete | 5d | 2025-12-24 A | 2025-12-29 A | JDH4-02-007-SB-1610 | 100% |  | QA/QC Engineer [32 h] |  |  | MKH2-02-002-SB-1120 | 0 | 0 | D6868 | CON-LEG101-SB-5580 | ENG |
| JDH4-02-007-MA-1610 |  | Material Approval for Ready Mixed Concrete | 5d | 2025-12-24 A | 2025-12-29 A | JDH4-02-007-MA-1600 | 100% | MODON-(6 Day X 8hrs) | Cost For Eng,Pro and T&C [7.35]; Consultant Staff [7.35 h] | 28,182.47 | 28,182.47 | MKH2-02-002-SB-1130 | 0 | 0 | D6870 | CON-LEG101-SB-5585 | ENG |
|  | 3 | **Water Proofing** |  | 2025-12-24 | 2025-12-29 |  |  |  |  |  |  |  |  |  |  |  |  |
| JDH4-02-007-MA-1620 |  | Material Submittal for Water Proofing | 5d | 2025-12-24 A | 2025-12-29 A | JDH4-02-007-SB-1630 | 100% |  | QA/QC Engineer [32 h] |  |  | MKH2-02-002-SB-1120 | 0 | 0 | D6888 | CON-LEG101-SB-5600 | ENG |
| JDH4-02-007-MA-1630 |  | Material Approval for Water Proofing | 5d | 2025-12-24 A | 2025-12-29 A | JDH4-02-007-MA-1620 | 100% | MODON-(6 Day X 8hrs) | Cost For Eng,Pro and T&C [7.35]; Consultant Staff [7.35 h] | 28,182.47 | 28,182.47 | MKH2-02-002-SB-1130 | 0 | 0 | D6890 | CON-LEG101-SB-5605 | ENG |

| ID | WBS | Activity | Duration | Start | Finish | Predecessors | Complete | Calendar | Resources | Cost | Actual cost | USERTEXT | Weight 1 | Total Weight % | Mapping Sheet Activity ID | Old Activity ID | Construction |
| --- | --- | --- | --- | --- | --- | --- | --- | --- | --- | --- | --- | --- | --- | --- | --- | --- | --- |
|  | 4 | **Aggregate Base Course** |  | 2025-12-24 | 2025-12-29 |  |  |  |  |  |  |  |  |  |  |  |  |
| JDH4-02-007-MA-1000 |  | Material Submittal for Aggregate Base Cource | 5d | 2025-12-24 A | 2025-12-29 A | JDH4-02-007-SB-1010 | 100% |  | QA/QC Engineer [32 h] |  |  | MKH2-02-002-SB-1120 | 0 | 0 | D2000 | CON-LEG101-SB-4920 | ENG |
| JDH4-02-007-MA-1010 |  | Material Approval for Aggregate Base Cource | 5d | 2025-12-24 A | 2025-12-29 A | JDH4-02-007-MA-1000 | 100% | MODON-(6 Day X 8hrs) | Cost For Eng,Pro and T&C [7.35]; Consultant Staff [7.35 h] | 28,182.47 | 28,182.47 | MKH2-02-002-SB-1130 | 0 | 0 | D2010 | CON-LEG101-SB-4925 | ENG |
|  | 5 | **Bituminous Base & Wearing Course** |  | 2025-12-24 | 2025-12-29 |  |  |  |  |  |  |  |  |  |  |  |  |
| JDH4-02-007-MA-1020 |  | Material Submittal for Bituminous Base & Wearing Cource | 5d | 2025-12-24 A | 2025-12-29 A | JDH4-02-007-SB-1030 | 100% |  | QA/QC Engineer [32 h] |  |  | MKH2-02-002-SB-1160 | 0 | 0 | D2040 | CON-LEG101-SB-4940 | ENG |
| JDH4-02-007-MA-1030 |  | Material Approval for Bituminous & Wearing Cource | 5d | 2025-12-24 A | 2025-12-29 A | JDH4-02-007-MA-1020 | 100% | MODON-(6 Day X 8hrs) | Cost For Eng,Pro and T&C [7.35]; Consultant Staff [7.35 h] | 28,182.47 | 28,182.47 | MKH2-02-002-SB-1170 | 0 | 0 | D2050 | CON-LEG101-SB-4945 | ENG |
|  | 7 | **Precast Concrete Kerb** |  | 2026-01-07 | 2026-01-11 |  |  |  |  |  |  |  |  |  |  |  |  |
| JDH4-02-007-MA-1040 |  | Material Submittal for Precast Concrete Kerb | 2d | 2026-01-07 A | 2026-01-08 A | JDH4-02-007-SB-1050 | 100% |  | QA/QC Engineer [32 h] |  |  | MKH2-02-002-SB-1240 | 0 | 0 | D2120 | CON-LEG101-SB-4960 | ENG |
| JDH4-02-007-MA-1050 |  | Material Approval for Precast Concrete Kerb | 2d | 2026-01-10 A | 2026-01-11 A | JDH4-02-007-MA-1040 | 100% | MODON-(6 Day X 8hrs) | Cost For Eng,Pro and T&C [7.35]; Consultant Staff [7.35 h] | 28,182.47 | 28,182.47 | MKH2-02-002-SB-1250 | 0 | 0 | D2130 | CON-LEG101-SB-4965 | ENG |
|  | 8 | **Interlocking Block Pavers** |  | 2026-01-07 | 2026-01-11 |  |  |  |  |  |  |  |  |  |  |  |  |
| JDH4-02-007-MA-1060 |  | Material Submittal for Interlocking Block Pavers | 2d | 2026-01-07 A | 2026-01-08 A | JDH4-02-007-SB-1070 | 100% |  | QA/QC Engineer [32 h] |  |  | MKH2-02-002-SB-1280 | 0 | 0 | D2160 | CON-LEG101-SB-4980 | ENG |
| JDH4-02-007-MA-1070 |  | Material Approval for Interlocking Block Pavers | 2d | 2026-01-10 A | 2026-01-11 A | JDH4-02-007-MA-1060 | 100% | MODON-(6 Day X 8hrs) | Cost For Eng,Pro and T&C [7.35]; Consultant Staff [7.35 h] | 28,182.47 | 28,182.47 | MKH2-02-002-SB-1290 | 0 | 0 | D2170 | CON-LEG101-SB-4985 | ENG |
|  | 9 | **Pavement Markings** |  | 2026-01-07 | 2026-01-11 |  |  |  |  |  |  |  |  |  |  |  |  |
| JDH4-02-007-MA-1080 |  | Material Submittal for Pavement Markings | 2d | 2026-01-07 A | 2026-01-08 A | JDH4-02-007-SB-1090 | 100% |  | QA/QC Engineer [32 h] |  |  | MKH2-02-002-SB-1320 | 0 | 0 | D2200 | CON-LEG101-SB-5000 | ENG |
| JDH4-02-007-MA-1090 |  | Material Approval for Pavement Markings | 2d | 2026-01-10 A | 2026-01-11 A | JDH4-02-007-MA-1080 | 100% | MODON-(6 Day X 8hrs) | Cost For Eng,Pro and T&C [7.35]; Consultant Staff [7.35 h] | 28,182.47 | 28,182.47 | MKH2-02-002-SB-1330 | 0 | 0 | D2210 | CON-LEG101-SB-5005 | ENG |
|  | 10 | **Traffic Signs** |  | 2026-01-07 | 2026-01-11 |  |  |  |  |  |  |  |  |  |  |  |  |
| JDH4-02-007-MA-1100 |  | Material Submittal for Traffic Signs | 2d | 2026-01-07 A | 2026-01-08 A | JDH4-02-007-SB-1100 | 100% |  | QA/QC Engineer [56 h] |  |  | MKH2-02-002-SB-1360 | 0 | 0 | D2240 | CON-LEG101-SB-5020 | ENG |
| JDH4-02-007-MA-1110 |  | Material Approval for Traffic Signs | 2d | 2026-01-10 A | 2026-01-11 A | JDH4-02-007-MA-1100, JDH4-02-007-SB-1530 | 100% | MODON-(6 Day X 8hrs) | Cost For Eng,Pro and T&C [7.35]; Consultant Staff [7.35 h] | 28,182.47 | 28,182.47 | MKH2-02-002-SB-1370 | 0 | 0 | D2250 | CON-LEG101-SB-5025 | ENG |
|  | 7 | **Storm Network** |  | 2025-12-24 | 2025-12-29 |  |  |  |  |  |  |  |  |  |  |  |  |
|  | 2 | **GRP Pipes** |  | 2025-12-24 | 2025-12-29 |  |  |  |  |  |  |  |  |  |  |  |  |
| JDH4-02-007-MA-1250 |  | Material Submittal for GRP Pipe | 5d | 2025-12-24 A | 2025-12-29 A | JDH4-02-007-SB-1270 | 100% |  | QA/QC Engineer [32 h] |  |  | MKH2-02-002-SB-1800 | 0 | 0 | D2640 | CON-LEG101-SB-5165 | ENG |
| JDH4-02-007-MA-1270 |  | Material Approval for GRP Pipe | 5d | 2025-12-24 A | 2025-12-29 A | JDH4-02-007-MA-1250 | 100% | MODON-(6 Day X 8hrs) | Cost For Eng,Pro and T&C [7.35]; Consultant Staff [7.35 h] | 28,182.47 | 28,182.47 | MKH2-02-002-SB-1810 | 0 | 0 | D2650 | CON-LEG101-SB-5170 | ENG |
|  | 1 | **Catch Basin** |  | 2025-12-24 | 2025-12-29 |  |  |  |  |  |  |  |  |  |  |  |  |
| JDH4-02-007-MA-1640 |  | Material Submittal for Catch Basin | 5d | 2025-12-24 A | 2025-12-29 A | JDH4-02-007-SB-1650 | 100% |  | QA/QC Engineer [32 h] |  |  | MKH2-02-002-SB-1960 | 0 | 0 | D2680 | CON-LEG101-SB-5620 | ENG |
| JDH4-02-007-MA-1650 |  | Material Approval for Catch Basin | 5d | 2025-12-24 A | 2025-12-29 A | JDH4-02-007-MA-1640 | 100% | MODON-(6 Day X 8hrs) | Cost For Eng,Pro and T&C [7.35]; Consultant Staff [7.35 h] | 28,182.47 | 28,182.47 | MKH2-02-002-SB-1970 | 0 | 0 | D2690 | CON-LEG101-SB-5625 | ENG |

| ID | WBS | Activity | Duration | Start | Finish | Predecessors | Complete | Calendar | Resources | Cost | Actual cost | USERTEXT | Weight 1 | Total Weight % | Mapping Sheet Activity ID | Old Activity ID | Construction |
| --- | --- | --- | --- | --- | --- | --- | --- | --- | --- | --- | --- | --- | --- | --- | --- | --- | --- |
|  | 6 | **Inlet Manholes** |  | 2025-12-24 | 2025-12-29 |  |  |  |  |  |  |  |  |  |  |  |  |
| JDH4-02-007-MA-1280 |  | Material Submittal for Inlet Manholes | 5d | 2025-12-24 A | 2025-12-29 A | JDH4-02-007-SB-1290 | 100% |  | QA/QC Engineer [32 h] |  |  | MKH2-02-002-SB-1960 | 0 | 0 | D2680 | CON-LEG101-SB-5200 | ENG |
| JDH4-02-007-MA-1290 |  | Material Approval for Inlet Manholes | 5d | 2025-12-24 A | 2025-12-29 A | JDH4-02-007-MA-1280 | 100% | MODON-(6 Day X 8hrs) | Cost For Eng,Pro and T&C [7.35]; Consultant Staff [7.35 h] | 28,182.47 | 28,182.47 | MKH2-02-002-SB-1970 | 0 | 0 | D2690 | CON-LEG101-SB-5205 | ENG |
|  | 6 | **Sanitary Sewerage** |  | 2025-12-24 | 2025-12-29 |  |  |  |  |  |  |  |  |  |  |  |  |
|  | 1 | **GRP Pipes** |  | 2025-12-24 | 2025-12-29 |  |  |  |  |  |  |  |  |  |  |  |  |
| JDH4-02-007-MA-1220 |  | Material Submittal for GRP Pipe | 5d | 2025-12-24 A | 2025-12-29 A | JDH4-02-007-SB-1230 | 100% |  | QA/QC Engineer [32 h] |  |  | MKH2-02-002-SB-1680 | 0 | 0 | D2520 | CON-LEG101-SB-5140 | ENG |
| JDH4-02-007-MA-1230 |  | Material Approval for GRP Pipe | 5d | 2025-12-24 A | 2025-12-29 A | JDH4-02-007-MA-1220 | 100% | MODON-(6 Day X 8hrs) | Cost For Eng,Pro and T&C [7.35]; Consultant Staff [7.35 h] | 28,182.47 | 28,182.47 | MKH2-02-002-SB-1690 | 0 | 0 | D2530 | CON-LEG101-SB-5145 | ENG |
|  | 2 | **Manholes** |  | 2025-12-24 | 2025-12-29 |  |  |  |  |  |  |  |  |  |  |  |  |
| JDH4-02-007-MA-1240 |  | Material Submittal for Manholes | 5d | 2025-12-24 A | 2025-12-29 A | JDH4-02-007-MA-1220, JDH4-02-007-SB-1250 | 100% |  | QA/QC Engineer [32 h] |  |  | MKH2-02-002-SB-1720 | 0 | 0 | D2560 | CON-LEG101-SB-5160 | ENG |
| JDH4-02-007-MA-1260 |  | Material Approval for Manholes | 5d | 2025-12-24 A | 2025-12-29 A | JDH4-02-007-MA-1240 | 100% | MODON-(6 Day X 8hrs) | Cost For Eng,Pro and T&C [7.35]; Consultant Staff [7.35 h] | 28,182.47 | 28,182.47 | MKH2-02-002-SB-1730 | 0 | 0 | D2570 | CON-LEG101-SB-5166 | ENG |
|  | 5 | **TSE Network** |  | 2025-12-24 | 2026-01-10 |  |  |  |  |  |  |  |  |  |  |  |  |
|  | 1 | **HDPE Pipe (PN 16)** |  | 2025-12-24 | 2026-01-10 |  |  |  |  |  |  |  |  |  |  |  |  |
| JDH4-02-007-MA-1200 |  | Material Submittal for HDPE Pipe (PN 16) | 5d | 2025-12-24 A | 2025-12-29 A | JDH4-02-007-SB-1210 | 100% |  | QA/QC Engineer [32 h] |  |  | MKH2-02-002-SB-1640 | 0 | 0 | D2480 | CON-LEG101-SB-5120 | ENG |
| JDH4-02-007-MA-1210 |  | Material Approval for HDPE Pipe (PN 16) | 3d | 2026-01-07 A | 2026-01-10 A | JDH4-02-007-MA-1200 | 100% | MODON-(6 Day X 8hrs) | Cost For Eng,Pro and T&C [7.35]; Consultant Staff [7.35 h] | 28,182.47 | 28,182.47 | MKH2-02-002-SB-1650 | 0 | 0 | D2490 | CON-LEG101-SB-5121 | ENG |
|  | 3 | **Valves / Chambers** |  | 2026-01-07 | 2026-01-10 |  |  |  |  |  |  |  |  |  |  |  |  |
| JDH4-02-007-MA-1440 |  | Material Submittal for Valves / Chambers | 2d | 2026-01-07 A | 2026-01-08 A | JDH4-02-007-SB-1450 | 100% |  | QA/QC Engineer [32 h] |  |  | MKH2-02-002-SB-5560 | 0 | 0 | D3440 | CON-LEG101-SB-5360 | ENG |
| JDH4-02-007-MA-1450 |  | Material Approval for Valves / Chambers | 2d | 2026-01-08 A | 2026-01-10 A | JDH4-02-007-MA-1440 | 100% | MODON-(6 Day X 8hrs) | Cost For Eng,Pro and T&C [7.35]; Consultant Staff [7.35 h] | 28,182.47 | 28,182.47 | MKH2-02-002-SB-5570 | 0 | 0 | D3450 | CON-LEG101-SB-5362 | ENG |
|  | 2 | **Risers** |  | 2026-01-07 | 2026-01-10 |  |  |  |  |  |  |  |  |  |  |  |  |
| JDH4-02-007-MA-1460 |  | Material Submittal for Risers | 2d | 2026-01-07 A | 2026-01-08 A | JDH4-02-007-SB-1470 | 100% |  | QA/QC Engineer [32 h] |  |  | MKH2-02-002-SB-5600 | 0 | 0 | D3480 | CON-LEG101-SB-5380 | ENG |
| JDH4-02-007-MA-1470 |  | Material Approval for Risers | 2d | 2026-01-08 A | 2026-01-10 A | JDH4-02-007-MA-1460 | 100% | MODON-(6 Day X 8hrs) | Cost For Eng,Pro and T&C [7.35]; Consultant Staff [7.35 h] | 28,182.47 | 28,182.47 | MKH2-02-002-SB-5610 | 0 | 0 | D3490 | CON-LEG101-SB-5385 | ENG |
|  | 4 | **Potable Water Network** |  | 2025-12-24 | 2026-01-10 |  |  |  |  |  |  |  |  |  |  |  |  |
|  | 1 | **HDPE Pipe (PN 16)** |  | 2025-12-24 | 2026-01-10 |  |  |  |  |  |  |  |  |  |  |  |  |
| JDH4-02-007-MA-1180 |  | Material Submittal for HDPE Pipe (PN 16) | 5d | 2025-12-24 A | 2025-12-29 A | JDH4-02-007-SB-1190 | 100% |  | QA/QC Engineer [32 h] |  |  | MKH2-02-002-SB-1560 | 0 | 0 | D2440 | CON-LEG101-SB-5100 | ENG |
| JDH4-02-007-MA-1190 |  | Material Approval for HDPE Pipe (PN 16) | 3d | 2026-01-07 A | 2026-01-10 A | JDH4-02-007-MA-1180 | 100% | MODON-(6 Day X 8hrs) | Cost For Eng,Pro and T&C [7.35]; Consultant Staff [7.35 h] | 28,182.47 | 28,182.47 | MKH2-02-002-SB-1570 | 0 | 0 | D2450 | CON-LEG101-SB-5105 | ENG |

| ID | WBS | Activity | Duration | Start | Finish | Predecessors | Complete | Planned start | Planned finish | Calendar | Resources | Cost | Actual cost | USERTEXT | Weight 1 | Total Weight % | Mapping Sheet Activity ID | Old Activity ID | Construction |
| --- | --- | --- | --- | --- | --- | --- | --- | --- | --- | --- | --- | --- | --- | --- | --- | --- | --- | --- | --- |
|  | 3 | **Valves / Chambers** |  | 2026-01-07 | 2026-01-10 |  |  |  |  |  |  |  |  |  |  |  |  |  |  |
| JDH4-02-007-MA-1420 |  | Material Submittal for Valves / Chambers | 3d | 2026-01-07 A | 2026-01-10 A | JDH4-02-007-SB-1430 | 100% |  |  |  | QA/QC Engineer [32 h] |  |  | MKH2-02-002-SB-5480 | 0 | 0 | D3360 | CON-LEG101-SB-5340 | ENG |
| JDH4-02-007-MA-1430 |  | Material Approval for Valves / Chambers | 2d | 2026-01-08 A | 2026-01-10 A | JDH4-02-007-MA-1420 | 100% |  |  | MODON-(6 Day X 8hrs) | Cost For Eng,Pro and T&C [7.35]; Consultant Staff [7.35 h] | 28,182.47 | 28,182.47 | MKH2-02-002-SB-5490 | 0 | 0 | D3370 | CON-LEG101-SB-5345 | ENG |
|  | 2 | **Fire Hydrant** |  | 2026-01-08 | 2026-01-10 |  |  |  |  |  |  |  |  |  |  |  |  |  |  |
| JDH4-02-007-MA-1660 |  | Material Submittal for Fire Hydrant | 2d | 2026-01-08 A | 2026-01-10 A | JDH4-02-007-SB-1660 | 100% |  |  |  | QA/QC Engineer [32 h] |  |  | MKH2-02-002-SB-5480 | 0 | 0 | D3360 | CON-LEG101-SB-5640 | ENG |
| JDH4-02-007-MA-1670 |  | Material Approval for Fire Hydrant | 1d | 2026-01-10 A | 2026-01-10 A | JDH4-02-007-MA-1660 | 100% |  |  | MODON-(6 Day X 8hrs) | Cost For Eng,Pro and T&C [7.35]; Consultant Staff [7.35 h] | 28,182.47 | 28,182.47 | MKH2-02-002-SB-5490 | 0 | 0 | D3370 | CON-LEG101-SB-5645 | ENG |
|  | 3 | **Electrical Network** |  | 2026-01-08 | 2026-06-11 |  |  |  |  |  |  |  |  |  |  |  |  |  |  |
|  | 2 | **Pipe for the Duct** |  | 2026-01-08 | 2026-01-10 |  |  |  |  |  |  |  |  |  |  |  |  |  |  |
| JDH4-02-007-MA-1120 |  | Material Submittal for Pipe for the Duct | 2d | 2026-01-08 A | 2026-01-10 A | JDH4-02-007-SB-1130 | 100% |  |  |  | QA/QC Engineer [32 h] |  |  | MKH2-02-002-SB-1440 | 0 | 0 | D2320 | CON-LEG101-SB-5040 | ENG |
| JDH4-02-007-MA-1130 |  | Material Approval for Pipe for the Duct By SEC | 1d | 2026-01-10 A | 2026-01-10 A | JDH4-02-007-MA-1120 | 100% |  |  | MODON-(6 Day X 8hrs) | Cost For Eng,Pro and T&C [7.35]; Consultant Staff [7.35 h] | 28,182.47 | 28,182.47 | MKH2-02-002-SB-1450 | 0 | 0 | D2330 | CON-LEG101-SB-5045 | ENG |
|  | 5 | **Low Voltage Cables** |  | 2026-01-10 | 2026-01-14 |  |  |  |  |  |  |  |  |  |  |  |  |  |  |
| JDH4-02-007-MA-1320 |  | Material Submittal for Low Voltage Cables | 1d | 2026-01-10 A | 2026-01-10 A | JDH4-02-007-SB-1330 | 100% |  |  |  | QA/QC Engineer [32 h] |  |  | MKH2-02-002-SB-5240 | 0 | 0 | D3120 | CON-LEG101-SB-5240 | ENG |
| JDH4-02-007-MA-1330 |  | Material Approval for Low Voltage Cables By SEC | 5d | 2026-01-10 A | 2026-01-14 A | JDH4-02-007-MA-1320 | 100% |  |  | MODON-(6 Day X 8hrs) | Cost For Eng,Pro and T&C [7.35]; Consultant Staff [7.35 h] | 28,182.47 | 28,182.47 | MKH2-02-002-SB-5250 | 0 | 0 | D3130 | CON-LEG101-SB-5245 | ENG |
|  | 4 | **Earthing System** |  | 2026-01-10 | 2026-01-19 |  |  |  |  |  |  |  |  |  |  |  |  |  |  |
| JDH4-02-007-MA-1160 |  | Material Submittal for Earthing System | 1d | 2026-01-10 A | 2026-01-10 A | JDH4-02-007-SB-1170 | 100% |  |  |  | QA/QC Engineer [32 h] |  |  | MKH2-02-002-SB-1520 | 0 | 0 | D2400 | CON-LEG101-SB-5080 | ENG |
| JDH4-02-007-MA-1170 |  | Material Approval for Earthing System By SEC | 3d | 2026-01-17 A | 2026-01-19 A | JDH4-02-007-MA-1160 | 100% |  |  | MODON-(6 Day X 8hrs) | Cost For Eng,Pro and T&C [7.35]; Consultant Staff [7.35 h] | 28,182.47 | 28,182.47 | MKH2-02-002-SB-1530 | 0 | 0 | D2410 | CON-LEG101-SB-5085 | ENG |
|  | 11 | **Medium Voltage Cable** |  | 2026-03-23 | 2026-06-03 |  |  |  |  |  |  |  |  |  |  |  |  |  |  |
| JDH4-02-007-MA-1300 |  | Material Submittal for Medium Voltage Cable | 1d | 2026-03-23 A | 2026-03-31 A | JDH4-02-007-SB-1310 | 100% | 2026-10-27 | 2026-10-27 |  | QA/QC Engineer [32 h] |  |  | MKH2-02-002-SB-5080 | 0 | 0 | D3000 | CON-LEG101-SB-5220 | ENG |
| JDH4-02-007-MA-1310 |  | Material Approval for Medium Voltage Cable By SEC | 14d | 2026-04-01 A | 2026-06-03 A | JDH4-02-007-MA-1300 | 100% | 2026-10-28 | 2026-11-12 | MODON-(6 Day X 8hrs) | Cost For Eng,Pro and T&C [7.35]; Consultant Staff [7.35 h] | 28,182.47 |  | MKH2-02-002-SB-5090 | 0 | 0 | D3010 | CON-LEG101-SB-5225 | ENG |
|  | 3 | **Low Voltage Distribution Panel** |  | 2026-01-10 | 2026-01-19 |  |  |  |  |  |  |  |  |  |  |  |  |  |  |
| JDH4-02-007-MA-1140 |  | Material Submittal for Low Voltage Distribution Panel | 1d | 2026-01-10 A | 2026-01-10 A | JDH4-02-007-SB-1150 | 100% |  |  |  | QA/QC Engineer [32 h] |  |  | MKH2-02-002-SB-1480 | 0 | 0 | D2360 | CON-LEG101-SB-5060 | ENG |
| JDH4-02-007-MA-1150 |  | Material Approval for Low Voltage Distribution Panel By SEC | 3d | 2026-01-17 A | 2026-01-19 A | JDH4-02-007-MA-1140 | 100% |  |  | MODON-(6 Day X 8hrs) | Cost For Eng,Pro and T&C [7.35]; Consultant Staff [7.35 h] | 28,182.47 | 28,182.47 | MKH2-02-002-SB-1490 | 0 | 0 | D2370 | CON-LEG101-SB-5065 | ENG |
|  | 9 | **Unit Sub Station** |  | 2026-01-11 | 2026-06-06 |  |  |  |  |  |  |  |  |  |  |  |  |  |  |
| JDH4-02-007-MA-1380 |  | Material Submittal for Unit Sub Station | 1d | 2026-01-11 A | 2026-04-23 A | JDH4-02-007-SB-1390 | 100% | 2026-01-11 | 2026-01-11 |  | QA/QC Engineer [32 h] |  |  | MKH2-02-002-SB-5400 | 0 | 0 | D3280 | CON-LEG101-SB-5300 | ENG |
| JDH4-02-007-MA-1390 |  | Material Approval for Unit Sub Station By SEC | 7d | 2026-04-25 A | 2026-06-06 A | JDH4-02-007-MA-1380 FS+30d | 100% | 2026-06-24 | 2026-07-01 | MODON-(6 Day X 8hrs) | Cost For Eng,Pro and T&C [7.35]; Consultant Staff [7.35 h] | 28,182.47 |  | MKH2-02-002-SB-5410 | 0 | 0 | D3290 | CON-LEG101-SB-5305 | ENG |

| ID | WBS | Activity | Duration | Start | Finish | Predecessors | Complete | Planned start | Planned finish | Calendar | Resources | Cost | Actual cost | USERTEXT | Weight 1 | Total Weight % | Mapping Sheet Activity ID | Old Activity ID | Construction |
| --- | --- | --- | --- | --- | --- | --- | --- | --- | --- | --- | --- | --- | --- | --- | --- | --- | --- | --- | --- |
|  | 10 | **Ring Main Unit (RMU)** |  | 2026-01-11 | 2026-06-03 |  |  |  |  |  |  |  |  |  |  |  |  |  |  |
| JDH4-02-007-MA-1400 |  | Material Submittal for Ring main Unit (RMU) | 1d | 2026-01-11 A | 2026-04-23 A | JDH4-02-007-SB-1410 | 100% | 2026-01-11 | 2026-01-11 |  | QA/QC Engineer [32 h] |  |  | MKH2-02-002-SB-5440 | 0 | 0 | D3320 | CON-LEG101-SB-5320 | ENG |
| JDH4-02-007-MA-1410 |  | Material Approval for Ring main Unit (RMU) By SEC | 7d | 2026-04-25 A | 2026-06-03 A | JDH4-02-007-MA-1400 FS+32d | 100% | 2026-06-17 | 2026-06-24 | MODON-(6 Day X 8hrs) | Cost For Eng,Pro and T&C [7.35]; Consultant Staff [7.35 h] | 28,182.47 |  | MKH2-02-002-SB-5450 | 0 | 0 | D3330 | CON-LEG101-SB-5325 | ENG |
|  | 6 | **Lighting poles** |  | 2026-01-10 | 2026-01-19 |  |  |  |  |  |  |  |  |  |  |  |  |  |  |
| JDH4-02-007-MA-1340 |  | Material Submittal for Lighting poles | 1d | 2026-01-10 A | 2026-01-10 A | JDH4-02-007-SB-1350 | 100% |  |  |  | QA/QC Engineer [32 h] |  |  | MKH2-02-002-SB-5280 | 0 | 0 | D3160 | CON-LEG101-SB-5260 | ENG |
| JDH4-02-007-MA-1350 |  | Material Approval for Lighting poles By SEC | 3d | 2026-01-17 A | 2026-01-19 A | JDH4-02-007-MA-1340 | 100% |  |  | MODON-(6 Day X 8hrs) | Cost For Eng,Pro and T&C [7.35]; Consultant Staff [7.35 h] | 28,182.47 | 28,182.47 | MKH2-02-002-SB-5290 | 0 | 0 | D3170 | CON-LEG101-SB-5265 | ENG |
|  | 1 | **Lighting panels/Feeder Pillers** |  | 2026-01-17 | 2026-06-11 |  |  |  |  |  |  |  |  |  |  |  |  |  |  |
| JDH4-02-007-MA-1515 |  | Material Submittal for Lighting panels/Feeder Pillers By SEC | 3d | 2026-01-17 A | 2026-01-19 A | JDH4-02-007-SB-1530 | 100% |  |  |  | QA/QC Engineer [32 h] |  |  | MKH2-02-002-SB-5280 | 0 | 0 | D4725 | CON-LEG101-SB-5466 | ENG |
| JDH4-02-007-MA-1520 |  | Material Approval for Lighting panels/Feeder Pillers | 7d | 2026-01-20 A | 2026-06-11 A | JDH4-02-007-MA-1515 FS+32d | 100% | 2026-06-17 | 2026-06-24 | MODON-(6 Day X 8hrs) | Cost For Eng,Pro and T&C [5.25]; Consultant Staff [5.25 h] | 28,182.47 |  | MKH2-02-002-SB-5300 | 0 | 0 | D4758 | CON-LEG101-SB-5460 | ENG |
|  | 7 | **Street Lighting Luminaire** |  | 2026-01-10 | 2026-01-19 |  |  |  |  |  |  |  |  |  |  |  |  |  |  |
| JDH4-02-007-MA-1360 |  | Material Submittal for Street Lighting Luminaire | 1d | 2026-01-10 A | 2026-01-10 A | JDH4-02-007-SB-1370 | 100% |  |  |  | QA/QC Engineer [32 h] |  |  | MKH2-02-002-SB-5320 | 0 | 0 | D3200 | CON-LEG101-SB-5280 | ENG |
| JDH4-02-007-MA-1370 |  | Material Approval for Street Lighting Luminaire By SEC | 3d | 2026-01-17 A | 2026-01-19 A | JDH4-02-007-MA-1360 | 100% |  |  | MODON-(6 Day X 8hrs) | Cost For Eng,Pro and T&C [7.35]; Consultant Staff [7.35 h] | 28,182.47 | 28,182.47 | MKH2-02-002-SB-5330 | 0 | 0 | D3210 | CON-LEG101-SB-5285 | ENG |
|  | 12 | **Telecommunications** |  | 2025-12-26 | 2025-12-29 |  |  |  |  |  |  |  |  |  |  |  |  |  |  |
|  | 2 | **Pipe for the Duct** |  | 2025-12-26 | 2025-12-29 |  |  |  |  |  |  |  |  |  |  |  |  |  |  |
| JDH4-02-007-MA-1540 |  | Material Submittal for Pipe for the Duct | 3d | 2025-12-26 A | 2025-12-29 A | JDH4-02-007-SB-1550 | 100% | 2025-12-27 | 2025-12-29 |  | QA/QC Engineer [32 h] |  |  | MKH2-02-002-SB-1440 | 0 | 0 | D4788 | CON-LEG101-SB-5480 | ENG |
| JDH4-02-007-MA-1550 |  | Material Approval for Pipe for the Duct | 3d | 2025-12-26 A | 2025-12-29 A | JDH4-02-007-MA-1540 | 100% | 2025-12-27 | 2025-12-29 | MODON-(6 Day X 8hrs) | Cost For Eng,Pro and T&C [7.35]; Consultant Staff [7.35 h] | 28,182.47 | 28,182.47 | MKH2-02-002-SB-1450 | 0 | 0 | D4790 | CON-LEG101-SB-5485 | ENG |
|  | 10 | **Sewage Lift Station** |  | 2026-01-01 | 2026-07-14 |  |  |  |  |  |  |  |  |  |  |  |  |  |  |
|  | 2 | **Thermal & Moisture Protection** |  | 2026-01-01 | 2026-01-04 |  |  |  |  |  |  |  |  |  |  |  |  |  |  |
| JDH4-02-007-MA-1490 |  | Material Submittal for Thermal & Moisture Protection | 5d | 2026-01-01 A | 2026-01-01 A | JDH4-02-007-SB-1510 FS+42d | 100% | 2026-02-25 | 2026-03-02 |  | QA/QC Engineer [32 h] |  |  | MKH2-02-002-SB-3040 | 0 | 0 | D3820 | CON-LEG101-SB-5400 | ENG |
| JDH4-02-007-MA-1510 |  | Material Approval for Thermal & Moisture Protection | 7d | 2026-01-03 A | 2026-01-04 A | JDH4-02-007-MA-1490 | 100% | 2026-03-03 | 2026-03-10 | MODON-(6 Day X 8hrs) | Cost For Eng,Pro and T&C [7.35]; Consultant Staff [7.35 h] | 28,182.47 |  | MKH2-02-002-SB-3050 | 0 | 0 | D3860 | CON-LEG101-SB-5420 | ENG |
|  | 1 | **Metals** |  | 2026-02-19 | 2026-02-25 |  |  |  |  |  |  |  |  |  |  |  |  |  |  |
| JDH4-02-007-MA-1480 |  | Material Submittal for Metal | 5d | 2026-02-19 A | 2026-02-19 A | JDH4-02-007-SB-1500 FS+42d | 100% | 2026-02-25 | 2026-03-02 |  | QA/QC Engineer [32 h] |  |  | MKH2-02-002-SB-3040 | 0 | 0 | D3800 | CON-LEG101-SB-5390 | ENG |
| JDH4-02-007-MA-1500 |  | Material Approval for Metal | 7d | 2026-02-21 A | 2026-02-25 A | JDH4-02-007-MA-1480 | 100% | 2026-03-03 | 2026-03-10 | MODON-(6 Day X 8hrs) | Cost For Eng,Pro and T&C [7.35]; Consultant Staff [7.35 h] | 28,182.47 |  | MKH2-02-002-SB-3050 | 0 | 0 | D3840 | CON-LEG101-SB-5410 | ENG |
|  | 3 | **Pumps** |  | 2026-01-10 | 2026-01-19 |  |  |  |  |  |  |  |  |  |  |  |  |  |  |
| JDH4-02-007-MA-1560 |  | Material Submittal for pumps | 1d | 2026-01-10 A | 2026-01-10 A | JDH4-02-007-SB-1570 | 100% |  |  |  | QA/QC Engineer [32 h] |  |  | MKH2-02-002-SB-3040 | 0 | 0 | D5778 | CON-LEG101-SB-5510 | ENG |
| JDH4-02-007-MA-1570 |  | Material Approval for pumps | 3d | 2026-01-17 A | 2026-01-19 A | JDH4-02-007-MA-1560 | 100% |  |  | MODON-(6 Day X 8hrs) | Cost For Eng,Pro and T&C [7.35]; Consultant Staff [7.35 h] | 28,182.47 | 28,182.47 | MKH2-02-002-SB-3050 | 0 | 0 | D5788 | CON-LEG101-SB-5520 | ENG |

| ID | WBS | Activity | Duration | Start | Finish | Predecessors | Complete | Planned start | Planned finish | Calendar | Resources | Cost | Actual cost | USERTEXT | Weight 1 | Total Weight % | Mapping Sheet Activity ID | Old Activity ID | Construction |
| --- | --- | --- | --- | --- | --- | --- | --- | --- | --- | --- | --- | --- | --- | --- | --- | --- | --- | --- | --- |
|  | 4 | **Pipes,Fittings & Valves** |  | 2026-01-10 | 2026-01-14 |  |  |  |  |  |  |  |  |  |  |  |  |  |  |
| JDH4-02-007-MA-1680 |  | Material Submittal for Pipes,Fittings & Valves | 1d | 2026-01-10 A | 2026-01-10 A | JDH4-02-007-SB-1700 | 100% |  |  |  | QA/QC Engineer [32 h] |  |  | MKH2-02-002-SB-3040 | 0 | 0 | D3800 | CON-LEG101-SB-5650 | ENG |
| JDH4-02-007-MA-1700 |  | Material Approval for Pipes,Fittings & Valves | 5d | 2026-01-10 A | 2026-01-14 A | JDH4-02-007-MA-1680 | 100% |  |  | MODON-(6 Day X 8hrs) | Cost For Eng,Pro and T&C [7.35]; Consultant Staff [7.35 h] | 28,182.47 | 28,182.47 | MKH2-02-002-SB-3050 | 0 | 0 | D3840 | CON-LEG101-SB-5670 | ENG |
|  | 5 | **Odours scrubbing system** |  | 2026-01-22 | 2026-01-27 |  |  |  |  |  |  |  |  |  |  |  |  |  |  |
| JDH4-02-007-MA-1690 |  | Material Submittal for Odours Scrubbing System | 1d | 2026-01-22 A | 2026-01-22 A | JDH4-02-007-SB-1710 | 100% |  |  |  | QA/QC Engineer [32 h] |  |  | MKH2-02-002-SB-3040 | 0 | 0 | D3820 | CON-LEG101-SB-5660 | ENG |
| JDH4-02-007-MA-1710 |  | Material Approval for Odours Scrubbing System | 5d | 2026-01-22 A | 2026-01-27 A | JDH4-02-007-MA-1690 | 100% |  |  | MODON-(6 Day X 8hrs) | Cost For Eng,Pro and T&C [7.35]; Consultant Staff [7.35 h] | 28,182.47 | 28,182.47 | MKH2-02-002-SB-3050 | 0 | 0 | D3860 | CON-LEG101-SB-5680 | ENG |
|  | 6 | **Crane** |  | 2026-01-17 | 2026-01-20 |  |  |  |  |  |  |  |  |  |  |  |  |  |  |
| JDH4-02-007-MA-1720 |  | Material Submittal for Crane | 2d | 2026-01-17 A | 2026-01-18 A | JDH4-02-007-MA-1690, JDH4-02-007-SB-1730 | 100% |  |  |  | QA/QC Engineer [32 h] |  |  | MKH2-02-002-SB-3040 | 0 | 0 | D5778 | CON-LEG101-SB-5690 | ENG |
| JDH4-02-007-MA-1730 |  | Material Approval for Crane | 4d | 2026-01-17 A | 2026-01-20 A | JDH4-02-007-MA-1720 | 100% |  |  | MODON-(6 Day X 8hrs) | Cost For Eng,Pro and T&C [7.35]; Consultant Staff [7.35 h] | 28,182.47 | 28,182.47 | MKH2-02-002-SB-3050 | 0 | 0 | D5788 | CON-LEG101-SB-5700 | ENG |
|  | 7 | **Air Vents** |  | 2026-01-21 | 2026-01-24 |  |  |  |  |  |  |  |  |  |  |  |  |  |  |
| JDH4-02-007-MA-1800 |  | Material Submittal for Air Vents | 2d | 2026-01-21 A | 2026-01-22 A | JDH4-02-007-SB-1820 | 100% |  |  |  | QA/QC Engineer [32 h] |  |  | MKH2-02-002-SB-3040 | 0 | 0 | D3800 | CON-LEG101-SB-5770 | ENG |
| JDH4-02-007-MA-1820 |  | Material Approval for Air Vents | 2d | 2026-01-22 A | 2026-01-24 A | JDH4-02-007-MA-1800 | 100% |  |  | MODON-(6 Day X 8hrs) | Cost For Eng,Pro and T&C [7.35]; Consultant Staff [7.35 h] | 28,182.47 | 28,182.47 | MKH2-02-002-SB-3050 | 0 | 0 | D3840 | CON-LEG101-SB-5790 | ENG |
|  | 8 | **Screening Container** |  | 2026-02-08 | 2026-03-01 |  |  |  |  |  |  |  |  |  |  |  |  |  |  |
| JDH4-02-007-MA-1740 |  | Material Submittal for Screening Container | 5d | 2026-02-08 A | 2026-02-08 A | JDH4-02-007-SB-1760 FS+50d | 100% | 2026-03-07 | 2026-03-11 |  | QA/QC Engineer [32 h] |  |  | MKH2-02-002-SB-3040 | 0 | 0 | D3800 | CON-LEG101-SB-5710 | ENG |
| JDH4-02-007-MA-1760 |  | Material Approval for Screening Container | 7d | 2026-02-10 A | 2026-03-01 A | JDH4-02-007-MA-1740 | 100% | 2026-03-12 | 2026-03-23 | MODON-(6 Day X 8hrs) | Cost For Eng,Pro and T&C [7.35]; Consultant Staff [7.35 h] | 28,182.47 |  | MKH2-02-002-SB-3050 | 0 | 0 | D3840 | CON-LEG101-SB-5730 | ENG |
|  | 9 | **Baffle Plates** |  | 2026-01-14 | 2026-01-19 |  |  |  |  |  |  |  |  |  |  |  |  |  |  |
| JDH4-02-007-MA-1810 |  | Material Submittal for Baffle plates | 1d | 2026-01-14 A | 2026-01-14 A | JDH4-02-007-SB-1830 | 100% |  |  |  | QA/QC Engineer [32 h] |  |  | MKH2-02-002-SB-3040 | 0 | 0 | D3820 | CON-LEG101-SB-5780 | ENG |
| JDH4-02-007-MA-1830 |  | Material Approval for Baffle plates | 4d | 2026-01-15 A | 2026-01-19 A | JDH4-02-007-MA-1810 | 100% |  |  | MODON-(6 Day X 8hrs) | Cost For Eng,Pro and T&C [7.35]; Consultant Staff [7.35 h] | 28,182.47 | 28,182.47 | MKH2-02-002-SB-3050 | 0 | 0 | D3860 | CON-LEG101-SB-5800 | ENG |
|  | 10 | **Anti-Water Hammer Equipment** |  | 2026-02-08 | 2026-02-09 |  |  |  |  |  |  |  |  |  |  |  |  |  |  |
| JDH4-02-007-MA-1840 |  | Material Submittal for Anti-Water Hammer Equipment | 5d | 2026-02-08 A | 2026-02-08 A | JDH4-02-007-SB-1850, JDH4-02-007-MA-1740 | 100% | 2026-03-12 | 2026-03-17 |  | QA/QC Engineer [32 h] |  |  | MKH2-02-002-SB-3040 | 0 | 0 | D5778 | CON-LEG101-SB-5810 | ENG |
| JDH4-02-007-MA-1850 |  | Material Approval for Anti-Water Hammer Equipment | 7d | 2026-02-09 A | 2026-02-09 A | JDH4-02-007-MA-1840 | 100% | 2026-03-22 | 2026-03-29 | MODON-(6 Day X 8hrs) | Cost For Eng,Pro and T&C [7.35]; Consultant Staff [7.35 h] | 28,182.47 |  | MKH2-02-002-SB-3050 | 0 | 0 | D5788 | CON-LEG101-SB-5820 | ENG |
|  | 11 | **Air Conditioning and Ventilation** |  | 2026-01-14 | 2026-01-18 |  |  |  |  |  |  |  |  |  |  |  |  |  |  |
| JDH4-02-007-MA-1750 |  | Material Submittal for Air Conditioning and Ventilation | 1d | 2026-01-14 A | 2026-01-14 A | JDH4-02-007-SB-1770 | 100% |  |  |  | QA/QC Engineer [32 h] |  |  | MKH2-02-002-SB-3040 | 0 | 0 | D3820 | CON-LEG101-SB-5720 | ENG |
| JDH4-02-007-MA-1770 |  | Material Approval for Air Conditioning and Ventilation | 3d | 2026-01-15 A | 2026-01-18 A | JDH4-02-007-MA-1750 | 100% |  |  | MODON-(6 Day X 8hrs) | Cost For Eng,Pro and T&C [7.35]; Consultant Staff [7.35 h] | 28,182.47 | 28,182.47 | MKH2-02-002-SB-3050 | 0 | 0 | D3860 | CON-LEG101-SB-5740 | ENG |

| ID | WBS | Activity | Duration | Start | Finish | Predecessors | Complete | Planned start | Planned finish | Calendar | Resources | Cost | Actual cost | USERTEXT | Weight 1 | Total Weight % | Mapping Sheet Activity ID | Old Activity ID | Construction |
| --- | --- | --- | --- | --- | --- | --- | --- | --- | --- | --- | --- | --- | --- | --- | --- | --- | --- | --- | --- |
|  | 12 | **Fuel System** |  | 2026-01-17 | 2026-02-10 |  |  |  |  |  |  |  |  |  |  |  |  |  |  |
| JDH4-02-007-MA-1780 |  | Material Submittal for Fuel System | 3d | 2026-01-17 A | 2026-01-19 A | JDH4-02-007-SB-1790 | 100% |  |  |  | QA/QC Engineer [32 h] |  |  | MKH2-02-002-SB-3040 | 0 | 0 | D5778 | CON-LEG101-SB-5750 | ENG |
| JDH4-02-007-MA-1790 |  | Material Approval for Fuel System(Completed) | 3d | 2026-01-29 A | 2026-02-01 A | JDH4-02-007-PR-1319 | 100% |  |  | MODON-(6 Day X 8hrs) | Cost For Eng,Pro and T&C [3.5]; Consultant Staff [7.35 h] | 14,091.23 |  | MKH2-02-002-SB-3050 | 0 | 0 | D5788 | CON-LEG101-SB-5760 | ENG |
| JDH4-02-007-MA-1790R |  | Material Approval for Fuel System | 7d | 2026-02-09 A | 2026-02-10 A | JDH4-02-007-MA-1780 FS+32d, JDH4-02-007-MA-1790 | 100% | 2026-02-28 | 2026-03-07 |  | Cost For Eng,Pro and T&C [3.5]; Consultant Staff [7.5 h] | 14,091 |  |  |  |  |  |  | ENG |
|  | 13 | **Fire Fighting System** |  | 2026-01-16 | 2026-02-19 |  |  |  |  |  |  |  |  |  |  |  |  |  |  |
| JDH4-02-007-MA-1920 |  | Material Submittal for Fire Fighting System | 3d | 2026-01-16 A | 2026-02-17 A | JDH4-02-007-SB-1930 | 100% | 2026-01-17 | 2026-01-19 |  | QA/QC Engineer [32 h] |  |  | MKH2-02-002-SB-3040 | 0 | 0 | D3800 | CON-LEG101-SB-5890 | ENG |
| JDH4-02-007-MA-1930 |  | Material Approval for Fire Fighting System | 7d | 2026-02-17 A | 2026-02-19 A | JDH4-02-007-MA-1920 FS+35d | 100% | 2026-03-04 | 2026-03-11 | MODON-(6 Day X 8hrs) | Cost For Eng,Pro and T&C [7.35]; Consultant Staff [7.35 h] | 28,182.47 |  | MKH2-02-002-SB-3050 | 0 | 0 | D3840 | CON-LEG101-SB-5900 | ENG |
|  | 14 | **Main Distribution Board /MCC panels** |  | 2026-01-17 | 2026-06-07 |  |  |  |  |  |  |  |  |  |  |  |  |  |  |
| JDH4-02-007-MA-1860 |  | Material Submittal for Main Distribution Board/MCC Panels | 3d | 2026-01-17 A | 2026-01-19 A | JDH4-02-007-SB-1870 | 100% |  |  |  | QA/QC Engineer [32 h] |  |  | MKH2-02-002-SB-3040 | 0 | 0 | D3800 | CON-LEG101-SB-5830 | ENG |
| JDH4-02-007-MA-1870 |  | Material Approval for Main Distribution Board/MCC Panels | 7d | 2026-01-20 A | 2026-06-07 A | JDH4-02-007-MA-1860 FS+30d | 100% | 2026-06-17 | 2026-06-24 | MODON-(6 Day X 8hrs) | Cost For Eng,Pro and T&C [7.35]; Consultant Staff [7.35 h] | 28,182.47 |  | MKH2-02-002-SB-3050 | 0 | 0 | D3840 | CON-LEG101-SB-5840 | ENG |
|  | 15 | **Final Panel boards** |  | 2026-01-13 | 2026-06-07 |  |  |  |  |  |  |  |  |  |  |  |  |  |  |
| JDH4-02-007-MA-1880 |  | Material Submittal for Final Panel Boards | 2d | 2026-01-13 A | 2026-01-14 A | JDH4-02-007-SB-1890 | 100% |  |  |  | QA/QC Engineer [32 h] |  |  | MKH2-02-002-SB-3040 | 0 | 0 | D3820 | CON-LEG101-SB-5850 | ENG |
| JDH4-02-007-MA-1890 |  | Material Approval for Final Panel Boards | 7d | 2026-01-15 A | 2026-06-07 A | JDH4-02-007-MA-1880 SS+32d | 100% | 2026-06-17 | 2026-06-24 | MODON-(6 Day X 8hrs) | Cost For Eng,Pro and T&C [7.35]; Consultant Staff [7.35 h] | 28,182.47 |  | MKH2-02-002-SB-3050 | 0 | 0 | D3860 | CON-LEG101-SB-5860 | ENG |
|  | 16 | **Local Control Panel/ Monitoring Control Panel** |  | 2026-01-13 | 2026-02-02 |  |  |  |  |  |  |  |  |  |  |  |  |  |  |
| JDH4-02-007-MA-1900 |  | Material Submittal for Local Control Panel / Monitoring Control Panel | 2d | 2026-01-13 A | 2026-01-14 A | JDH4-02-007-SB-1910 | 100% |  |  |  | QA/QC Engineer [32 h] |  |  | MKH2-02-002-SB-3040 | 0 | 0 | D3800 | CON-LEG101-SB-5870 | ENG |
| JDH4-02-007-MA-1910 |  | Material Approval for Local Control Panel / Monitoring Control Panel | 7d | 2026-01-14 A | 2026-02-02 A | JDH4-02-007-MA-1900, JDH4-02-007-MA-1890 | 100% | 2026-03-30 | 2026-04-06 | MODON-(6 Day X 8hrs) | Cost For Eng,Pro and T&C [7.35]; Consultant Staff [7.35 h] | 28,182.47 |  | MKH2-02-002-SB-3050 | 0 | 0 | D3840 | CON-LEG101-SB-5880 | ENG |
|  | 17 | **Engine Generators** |  | 2026-01-12 | 2026-01-19 |  |  |  |  |  |  |  |  |  |  |  |  |  |  |
| JDH4-02-007-MA-2060 |  | Material Submittal for Engine Generators | 2d | 2026-01-12 A | 2026-01-13 A | JDH4-02-007-SB-2070 | 100% |  |  |  | QA/QC Engineer [32 h] |  |  | MKH2-02-002-SB-3040 | 0 | 0 | D3800 | CON-LEG101-SB-6030 | ENG |
| JDH4-02-007-MA-2070 |  | Material Approval for Engine Generators | 3d | 2026-01-17 A | 2026-01-19 A | JDH4-02-007-MA-2060 | 100% |  |  | MODON-(6 Day X 8hrs) | Cost For Eng,Pro and T&C [7.35]; Consultant Staff [7.35 h] | 28,182.47 | 28,182.47 | MKH2-02-002-SB-3050 | 0 | 0 | D3840 | CON-LEG101-SB-6040 | ENG |
|  | 18 | **Standby Diesel Generator** |  | 2026-01-13 | 2026-01-19 |  |  |  |  |  |  |  |  |  |  |  |  |  |  |
| JDH4-02-007-MA-2040 |  | Material Submittal for Standby Diesel Generator | 2d | 2026-01-13 A | 2026-01-14 A | JDH4-02-007-SB-2050 | 100% |  |  |  | QA/QC Engineer [32 h] |  |  | MKH2-02-002-SB-3040 | 0 | 0 | D3800 | CON-LEG101-SB-6010 | ENG |
| JDH4-02-007-MA-2050 |  | Material Approval for Standby Diesel Generator | 3d | 2026-01-17 A | 2026-01-19 A | JDH4-02-007-MA-2040 | 100% |  |  | MODON-(6 Day X 8hrs) | Cost For Eng,Pro and T&C [7.35]; Consultant Staff [7.35 h] | 28,182.47 | 28,182.47 | MKH2-02-002-SB-3050 | 0 | 0 | D3840 | CON-LEG101-SB-6020 | ENG |
|  | 19 | **Power Factor Correction Capacitor Bank** |  | 2026-01-17 | 2026-07-14 |  |  |  |  |  |  |  |  |  |  |  |  |  |  |
| JDH4-02-007-MA-2000 |  | Material Submittal for Power Factor correction Capacitor Bank | 3d | 2026-01-17 A | 2026-01-19 A | JDH4-02-007-SB-2010 | 100% |  |  |  | QA/QC Engineer [32 h] |  |  | MKH2-02-002-SB-3040 | 0 | 0 | D3820 | CON-LEG101-SB-5970 | ENG |
| JDH4-02-007-MA-2010 |  | Material Approval for Power Factor correction Capacitor Bank | 7d | 2026-07-12 A | 2026-07-14 A | JDH4-02-007-MA-2000, JDH4-02-007-MA-1890 SS | 100% | 2026-08-05 | 2026-08-12 | MODON-(6 Day X 8hrs) | Cost For Eng,Pro and T&C [7.35]; Consultant Staff [7.35 h] | 28,182.47 |  | MKH2-02-002-SB-3050 | 0 | 0 | D3860 | CON-LEG101-SB-5980 | ENG |

| ID | WBS | Activity | Duration | Start | Finish | Predecessors | Complete | Planned start | Planned finish | Calendar | Resources | Cost | Actual cost | USERTEXT | Weight 1 | Total Weight % | Mapping Sheet Activity ID | Old Activity ID | Construction |
| --- | --- | --- | --- | --- | --- | --- | --- | --- | --- | --- | --- | --- | --- | --- | --- | --- | --- | --- | --- |
|  | 20 | **Low-Voltage Electrical Power Conductors and Cables** |  | 2026-01-10 | 2026-01-19 |  |  |  |  |  |  |  |  |  |  |  |  |  |  |
| JDH4-02-007-MA-2020 |  | Material Submittal for Low Voltage Electrical Power Conductors & Cables | 1d | 2026-01-10 A | 2026-01-10 A | JDH4-02-007-SB-2030 | 100% |  |  |  | QA/QC Engineer [32 h] |  |  | MKH2-02-002-SB-3040 | 0 | 0 | D5778 | CON-LEG101-SB-5990 | ENG |
| JDH4-02-007-MA-2030 |  | Material Approval for Low Voltage Electrical Power Conductors & Cables | 3d | 2026-01-17 A | 2026-01-19 A | JDH4-02-007-MA-2020 | 100% |  |  | MODON-(6 Day X 8hrs) | Cost For Eng,Pro and T&C [7.35]; Consultant Staff [7.35 h] | 28,182.47 | 28,182.47 | MKH2-02-002-SB-3050 | 0 | 0 | D5788 | CON-LEG101-SB-6000 | ENG |
|  | 21 | **Low Voltage Feeder Cable** |  | 2026-01-10 | 2026-01-19 |  |  |  |  |  |  |  |  |  |  |  |  |  |  |
| JDH4-02-007-MA-1980 |  | Material Submittal for Low Voltage Feeder Cable | 1d | 2026-01-10 A | 2026-01-10 A | JDH4-02-007-SB-1990 | 100% |  |  |  | QA/QC Engineer [32 h] |  |  | MKH2-02-002-SB-3040 | 0 | 0 | D3800 | CON-LEG101-SB-5950 | ENG |
| JDH4-02-007-MA-1990 |  | Material Approval for Low Voltage Feeder Cable | 3d | 2026-01-17 A | 2026-01-19 A | JDH4-02-007-MA-1980 | 100% |  |  | MODON-(6 Day X 8hrs) | Cost For Eng,Pro and T&C [7.35]; Consultant Staff [7.35 h] | 28,182.47 | 28,182.47 | MKH2-02-002-SB-3050 | 0 | 0 | D3840 | CON-LEG101-SB-5960 | ENG |
|  | 22 | **Wiring Devices** |  | 2026-01-10 | 2026-01-28 |  |  |  |  |  |  |  |  |  |  |  |  |  |  |
| JDH4-02-007-MA-1940 |  | Material Submittal for Wiring Devices | 1d | 2026-01-10 A | 2026-01-10 A | JDH4-02-007-SB-1950 | 100% |  |  |  | QA/QC Engineer [32 h] |  |  | MKH2-02-002-SB-3040 | 0 | 0 | D3820 | CON-LEG101-SB-5910 | ENG |
| JDH4-02-007-MA-1950 |  | Material Approval for Wiring Devices | 7d | 2026-01-11 A | 2026-01-28 A | JDH4-02-007-MA-1940 FS+35d | 100% | 2026-02-21 | 2026-03-01 | MODON-(6 Day X 8hrs) | Cost For Eng,Pro and T&C [7.35]; Consultant Staff [7.35 h] | 28,182.47 |  | MKH2-02-002-SB-3050 | 0 | 0 | D3860 | CON-LEG101-SB-5920 | ENG |
|  | 23 | **Enclosed Switches and Circuit Breakers** |  | 2026-01-10 | 2026-01-19 |  |  |  |  |  |  |  |  |  |  |  |  |  |  |
| JDH4-02-007-MA-1960 |  | Material Submittal for Enclosed Switches and Circuit Breakers | 1d | 2026-01-10 A | 2026-01-10 A | JDH4-02-007-SB-1970 | 100% |  |  |  | QA/QC Engineer [32 h] |  |  | MKH2-02-002-SB-3040 | 0 | 0 | D5778 | CON-LEG101-SB-5930 | ENG |
| JDH4-02-007-MA-1970 |  | Material Approval for Enclosed Switches and Circuit Breakers | 3d | 2026-01-17 A | 2026-01-19 A | JDH4-02-007-MA-1960 | 100% |  |  | MODON-(6 Day X 8hrs) | Cost For Eng,Pro and T&C [7.35]; Consultant Staff [7.35 h] | 28,182.47 | 28,182.47 | MKH2-02-002-SB-3050 | 0 | 0 | D5788 | CON-LEG101-SB-5940 | ENG |
|  | 24 | **Raceways for Electrical Systems** |  | 2026-01-13 | 2026-01-20 |  |  |  |  |  |  |  |  |  |  |  |  |  |  |
| JDH4-02-007-MA-2100 |  | Material Submittal for Raceways for Electrical System | 5d | 2026-01-13 A | 2026-01-14 A | JDH4-02-007-SB-2110 FS+35d | 100% | 2026-03-11 | 2026-03-16 |  | QA/QC Engineer [32 h] |  |  | MKH2-02-002-SB-3040 | 0 | 0 | D3800 | CON-LEG101-SB-6070 | ENG |
| JDH4-02-007-MA-2110 |  | Material Approval for Raceways for Electrical System | 7d | 2026-01-15 A | 2026-01-20 A | JDH4-02-007-MA-2100 | 100% | 2026-03-17 | 2026-03-28 | MODON-(6 Day X 8hrs) | Cost For Eng,Pro and T&C [7.35]; Consultant Staff [7.35 h] | 28,182.47 |  | MKH2-02-002-SB-3050 | 0 | 0 | D3840 | CON-LEG101-SB-6080 | ENG |
|  | 25 | **Electrical Manholes** |  | 2026-01-01 | 2026-01-07 |  |  |  |  |  |  |  |  |  |  |  |  |  |  |
| JDH4-02-007-MA-2140 |  | Material Submittal for Electrical Manholes | 2d | 2026-01-01 A | 2026-01-03 A | JDH4-02-007-SB-2150 | 100% |  |  |  | QA/QC Engineer [32 h] |  |  | MKH2-02-002-SB-3040 | 0 | 0 | D5778 | CON-LEG101-SB-6110 | ENG |
| JDH4-02-007-MA-2150 |  | Material Approval for Electrical Manholes | 4d | 2026-01-04 A | 2026-01-07 A | JDH4-02-007-MA-2140 | 100% |  |  | MODON-(6 Day X 8hrs) | Cost For Eng,Pro and T&C [7.35]; Consultant Staff [7.35 h] | 28,182.47 | 28,182.47 | MKH2-02-002-SB-3050 | 0 | 0 | D5788 | CON-LEG101-SB-6120 | ENG |
|  | 27 | **Security System (CCTV System)** |  | 2026-01-13 | 2026-01-19 |  |  |  |  |  |  |  |  |  |  |  |  |  |  |
| JDH4-02-007-MA-2080 |  | Material Submittal for Security System (CCTV System) | 2d | 2026-01-13 A | 2026-01-14 A | JDH4-02-007-SB-2090 | 100% |  |  |  | QA/QC Engineer [32 h] |  |  | MKH2-02-002-SB-3040 | 0 | 0 | D3820 | CON-LEG101-SB-6050 | ENG |
| JDH4-02-007-MA-2090 |  | Material Approval for Security System (CCTV System) | 3d | 2026-01-17 A | 2026-01-19 A | JDH4-02-007-MA-2080 | 100% |  |  | MODON-(6 Day X 8hrs) | Cost For Eng,Pro and T&C [7.35]; Consultant Staff [7.35 h] | 28,182.47 | 28,182.47 | MKH2-02-002-SB-3050 | 0 | 0 | D3860 | CON-LEG101-SB-6060 | ENG |
|  | 26 | **ICT (Data& telephone System)** |  | 2026-01-13 | 2026-01-19 |  |  |  |  |  |  |  |  |  |  |  |  |  |  |
| JDH4-02-007-MA-2120 |  | Material Submittal for ICT (Data & Telephone System) | 2d | 2026-01-13 A | 2026-01-14 A | JDH4-02-007-SB-2130 | 100% |  |  |  | QA/QC Engineer [32 h] |  |  | MKH2-02-002-SB-3040 | 0 | 0 | D3800 | CON-LEG101-SB-6090 | ENG |
| JDH4-02-007-MA-2130 |  | Material Approval for ICT (Data & Telephone System) | 3d | 2026-01-17 A | 2026-01-19 A | JDH4-02-007-MA-2120 | 100% |  |  | MODON-(6 Day X 8hrs) | Cost For Eng,Pro and T&C [7.35]; Consultant Staff [7.35 h] | 28,182.47 | 28,182.47 | MKH2-02-002-SB-3050 | 0 | 0 | D3840 | CON-LEG101-SB-6100 | ENG |

| ID | WBS | Activity | Duration | Start | Finish | Predecessors | Complete | Planned start | Planned finish | Calendar | Resources | Cost | Actual cost | USERTEXT | Weight 1 | Total Weight % | Mapping Sheet Activity ID | Old Activity ID | Construction | Procurement |
| --- | --- | --- | --- | --- | --- | --- | --- | --- | --- | --- | --- | --- | --- | --- | --- | --- | --- | --- | --- | --- |
|  | 28 | **Programmable Logic Controllers** |  | 2026-02-01 | 2026-02-02 |  |  |  |  |  |  |  |  |  |  |  |  |  |  |  |
| JDH4-02-007-MA-2200 |  | Material Submittal for Programmable Logic Controllers | 5d | 2026-02-01 A | 2026-02-01 A | JDH4-02-007-SB-2210, JDH4-02-007-MA-2100, JDH4-02-007-MA-2100 FF | 100% | 2026-02-23 | 2026-02-28 |  | QA/QC Engineer [32 h] |  |  | MKH2-02-002-SB-3040 | 0 | 0 | D5778 | CON-LEG101-SB-6170 | ENG |  |
| JDH4-02-007-MA-2210 |  | Material Approval for Programmable Logic Controllers | 7d | 2026-02-02 A | 2026-02-02 A | JDH4-02-007-MA-2200 | 100% | 2026-03-01 | 2026-03-08 | MODON-(6 Day X 8hrs) | Cost For Eng,Pro and T&C [7.35]; Consultant Staff [7.35 h] | 28,182.47 |  | MKH2-02-002-SB-3050 | 0 | 0 | D5788 | CON-LEG101-SB-6180 | ENG |  |
|  | 29 | **Process Control Wiring** |  | 2026-01-17 | 2026-02-08 |  |  |  |  |  |  |  |  |  |  |  |  |  |  |  |
| JDH4-02-007-MA-2180 |  | Material Submittal for Process Control Wiring | 2d | 2026-01-17 A | 2026-01-18 A | JDH4-02-007-SB-2190 | 100% |  |  |  | QA/QC Engineer [32 h] |  |  | MKH2-02-002-SB-3040 | 0 | 0 | D3800 | CON-LEG101-SB-6150 | ENG |  |
| JDH4-02-007-MA-2190 |  | Material Approval for Process Control Wiring | 7d | 2026-02-02 A | 2026-02-08 A | JDH4-02-007-MA-2180 FS+25d | 100% | 2026-02-17 | 2026-02-25 | MODON-(6 Day X 8hrs) | Cost For Eng,Pro and T&C [7.35]; Consultant Staff [7.35 h] | 28,182.47 |  | MKH2-02-002-SB-3050 | 0 | 0 | D3840 | CON-LEG101-SB-6160 | ENG |  |
|  | 30 | **Instrumentation for Process Systems** |  | 2026-01-17 | 2026-01-26 |  |  |  |  |  |  |  |  |  |  |  |  |  |  |  |
| JDH4-02-007-MA-2160 |  | Material Submittal for Instrumentation Control Wiring | 2d | 2026-01-17 A | 2026-01-18 A | JDH4-02-007-SB-2170 | 100% |  |  |  | QA/QC Engineer [32 h] |  |  | MKH2-02-002-SB-3040 | 0 | 0 | D3820 | CON-LEG101-SB-6130 | ENG |  |
| JDH4-02-007-MA-2170 |  | Material Approval for Instrumentation Control Wiring | 5d | 2026-01-21 A | 2026-01-26 A | JDH4-02-007-MA-2160, JDH4-02-007-SB-1990 | 100% |  |  | MODON-(6 Day X 8hrs) | Cost For Eng,Pro and T&C [7.35]; Consultant Staff [7.35 h] | 28,182.47 | 28,182.47 | MKH2-02-002-SB-3050 | 0 | 0 | D3860 | CON-LEG101-SB-6140 | ENG |  |
|  | 4 | **Procurement** |  | 2025-12-27 | 2026-10-06 |  |  |  |  |  |  |  |  |  |  |  |  |  |  |  |
|  | 2 | **Short Lead Item** |  | 2025-12-27 | 2026-09-29 |  |  |  |  |  |  |  |  |  |  |  |  |  |  |  |
|  | 1 | **Road Works - Civil** |  | 2025-12-31 | 2026-09-29 |  |  |  |  |  |  |  |  |  |  |  |  |  |  |  |
|  | 1 | **Steel Reinforcement** |  | 2025-12-31 | 2026-02-02 |  |  |  |  |  |  |  |  |  |  |  |  |  |  |  |
| JDH4-02-007-PR-1300 |  | PO for Steel Reinforcement | 3d | 2025-12-31 A | 2026-01-03 A | JDH4-02-007-MA-1590 | 100% |  |  |  | Purchaser [8 h] |  |  | MKH2-02-002-PR-1930 | 0 | 0 | E1450 | CON-LEG101-PR-1390 | PRO | PR-RD |
| JDH4-02-007-PR-1310 |  | Material Fabrication for Steel Reinforcement | 1d | 2026-01-03 A | 2026-01-03 A | JDH4-02-007-PR-1300 | 100% |  |  |  | QA/QC Engineer [160 h] |  |  | MKH2-02-002-PR-1940 | 0 | 0 | E1460 | CON-LEG101-PR-1400 | PRO | PR-RD |
| JDH4-02-007-PR-1319 |  | Material Delivery for Steel Reinforcement - Stage 1(Completed) | 4d | 2026-01-28 A | 2026-02-01 A | JDH4-02-007-PR-1310, JDH4-02-007-MA-2030 | 100% |  |  |  | Cost For Eng,Pro and T&C [2.8]; Purchaser [180 h] | 35,815.22 |  |  |  |  |  |  | PRO | PR-RD |
| JDH4-02-007-PR-1319R |  | Material Delivery for Steel Reinforcement - Stage 1 | 11d | 2026-01-28 A | 2026-01-29 A | JDH4-02-007-PR-1310, JDH4-02-007-MA-2030, JDH4-02-007-MA-2010 FF, JDH4-02-007-PR-1319 | 100% | 2026-02-15 | 2026-02-28 |  | Cost For Eng,Pro and T&C [4.2]; Purchaser [135 h] | 53,722.79 |  |  |  |  |  |  | PRO |  |
| JDH4-02-007-PR-1320 |  | Material Delivery for Steel Reinforcement - Stage 2 | 19d | 2026-01-31 A | 2026-02-02 A | JDH4-02-007-PR-1319, JDH4-02-007-PR-1319R | 100% | 2026-03-01 | 2026-03-25 |  | Cost For Eng,Pro and T&C [6.57]; QA/QC Engineer [296 h] | 89,538.05 |  | MKH2-02-002-PR-1950 | 0 | 0 | E1470 | CON-LEG101-PR-1410 | PRO | PR-RD |
|  | 2 | **Ready Mixed Concrete** |  | 2025-12-31 | 2026-01-05 |  |  |  |  |  |  |  |  |  |  |  |  |  |  |  |
| JDH4-02-007-PR-1330 |  | PO for Ready Mixed Concrete | 3d | 2025-12-31 A | 2026-01-03 A | JDH4-02-007-MA-1610 | 100% |  |  |  | Purchaser [16 h] |  |  | MKH2-02-002-PR-1960 | 0 | 0 | E1480 | CON-LEG101-PR-1420 | PRO | PR-RD |
| JDH4-02-007-PR-1340 |  | Material Delivery for Ready Mixed Concrete | 3d | 2026-01-03 A | 2026-01-05 A | JDH4-02-007-PR-1330 | 100% |  |  |  | Cost For Eng,Pro and T&C [13.14]; QA/QC Engineer [24 h] | 179,076.09 | 179,076.09 | MKH2-02-002-PR-1970 | 0 | 0 | E1490 | CON-LEG101-PR-1430 | PRO | PR-RD |
|  | 3 | **Water Proofing** |  | 2026-01-01 | 2026-02-19 |  |  |  |  |  |  |  |  |  |  |  |  |  |  |  |
| JDH4-02-007-PR-1350 |  | PO for Water Proofing | 5d | 2026-01-01 A | 2026-01-05 A | JDH4-02-007-MA-1630 FS+42d | 100% | 2026-03-22 | 2026-03-26 |  | Purchaser [8 h] |  |  | MKH2-02-002-PR-1980 | 0 | 0 | E1500 | CON-LEG101-PR-1440 | PRO | PR-RD |
| JDH4-02-007-PR-1360 |  | Material Fabrication for Water Proofing | 25d | 2026-01-06 A | 2026-01-15 A | JDH4-02-007-PR-1350 | 100% | 2026-03-28 | 2026-04-25 |  | QA/QC Engineer [200 h] |  |  | MKH2-02-002-PR-1990 | 0 | 0 | E1510 | CON-LEG101-PR-1450 | PRO | PR-RD |
| JDH4-02-007-PR-1370 |  | Material Delivery for Water Proofing | 25d | 2026-01-17 A | 2026-02-19 A | JDH4-02-007-PR-1360, JDH4-02-007-MS-1040 | 100% | 2026-04-26 | 2026-05-24 |  | Cost For Eng,Pro and T&C [13.14]; QA/QC Engineer [24 h] | 179,076.09 |  | MKH2-02-002-PR-2000 | 0 | 0 | E1520 | CON-LEG101-PR-1460 | PRO | PR-RD |

| ID | WBS | Activity | Duration | Start | Finish | Predecessors | Complete | Planned start | Planned finish | Resources | Cost | USERTEXT | Weight 1 | Total Weight % | Mapping Sheet Activity ID | Old Activity ID | Construction | Procurement |
| --- | --- | --- | --- | --- | --- | --- | --- | --- | --- | --- | --- | --- | --- | --- | --- | --- | --- | --- |
|  | 4 | **Aggregate Base Course** |  | 2026-04-08 | 2026-08-03 |  |  |  |  |  |  |  |  |  |  |  |  |  |
| JDH4-02-007-PR-1380 |  | PO for Aggregate Base Course | 5d | 2026-04-08 A | 2026-04-11 A | JDH4-02-007-MA-1010 FS+45d | 100% | 2026-05-13 | 2026-05-18 | Purchaser [40 h] |  | MKH2-02-002-PR-2010 | 0 | 0 | E1530 | CON-LEG101-PR-1470 | PRO | PR-RD |
| JDH4-02-007-PR-1389 |  | Material Delivery for Aggregate Base Course - Stage 1 | 20d | 2026-05-06 A | 2026-07-04 A | JDH4-02-007-PR-1380, JDH4-02-007-CN-5480R | 100% | 2026-05-21 | 2026-06-17 | Cost For Eng,Pro and T&C [200]; Purchaser [200 h] | 89,538.05 |  |  |  |  |  | PRO | PR-RD |
| JDH4-02-007-PR-1390 |  | Material Delivery for Aggregate Base Course - Stage 2 | 20d | 2026-07-23 A | 2026-08-03 A | JDH4-02-007-PR-1389, JDH4-02-007-MS-1040 | 100% | 2026-07-23 | 2026-08-15 | Cost For Eng,Pro and T&C [21.9]; QA/QC Engineer [472 h] | 89,538.05 | MKH2-02-002-PR-2030 | 0 | 0 | E1550 | CON-LEG101-PR-1490 | PRO | PR-RD |
|  | 5 | **Bituminous Base & Wearing Course** |  | 2026-03-04 | 2026-09-29 |  |  |  |  |  |  |  |  |  |  |  |  |  |
| JDH4-02-007-PR-1400 |  | PO for Bituminous Base & Wearing Cource | 5d | 2026-03-04 A | 2026-04-08 A | JDH4-02-007-MA-1030, JDH4-02-007-PR-1380 | 100% | 2026-06-10 | 2026-06-15 | Purchaser [32 h] |  | MKH2-02-002-PR-2040 | 0 | 0 | E1560 | CON-LEG101-PR-1500 | PRO | PR-RD |
| JDH4-02-007-PR-1410 |  | Material Delivery to the Site | 30d | 2026-04-16 A | 2026-09-29 A | JDH4-02-007-PR-1400, JDH4-02-007-MA-1110, JDH4-02-007-CN-5060 | 100% | 2026-06-25 | 2026-07-29 | Cost For Eng,Pro and T&C [21.9]; QA/QC Engineer [224 h] | 179,076.09 | MKH2-02-002-PR-2050 | 0 | 0 | E1570 | CON-LEG101-PR-1510 | PRO | PR-RD |
|  | 7 | **Precast Concrete Kerb** |  | 2026-03-11 | 2026-07-30 |  |  |  |  |  |  |  |  |  |  |  |  |  |
| JDH4-02-007-PR-1420 |  | PO for Precast Concrete Kerb | 5d | 2026-03-11 A | 2026-03-11 A | JDH4-02-007-MA-1050, JDH4-02-007-PR-1400 | 100% | 2026-05-25 | 2026-06-02 | Purchaser [40 h] |  | MKH2-02-002-PR-2080 | 0 | 0 | E1600 | CON-LEG101-PR-1520 | PRO | PR-RD |
| JDH4-02-007-PR-1430 |  | Material Fabrication for Precast Concrete Kerb | 30d | 2026-03-12 A | 2026-04-23 A | JDH4-02-007-PR-1420 | 100% | 2026-06-03 | 2026-07-07 | QA/QC Engineer [144 h] |  | MKH2-02-002-PR-2090 | 0 | 0 | E1610 | CON-LEG101-PR-1530 | PRO | PR-RD |
| JDH4-02-007-PR-1440 |  | Material Delivery for Precast Concrete Kerb | 28d | 2026-04-25 A | 2026-07-30 A | JDH4-02-007-PR-1430, JDH4-02-007-PR-1410 | 100% | 2026-07-08 | 2026-08-09 | Cost For Eng,Pro and T&C [21.9]; QA/QC Engineer [32 h] | 179,076.09 | MKH2-02-002-PR-2100 | 0 | 0 | E1620 | CON-LEG101-PR-1540 | PRO | PR-RD |
|  | 8 | **Interlocking Block Pavers** |  | 2026-06-01 | 2026-07-30 |  |  |  |  |  |  |  |  |  |  |  |  |  |
| JDH4-02-007-PR-1450 |  | PO for Interlocking Block Pavers | 3d | 2026-06-01 A | 2026-06-03 A | JDH4-02-007-MA-1070, JDH4-02-007-PR-1420 | 100% | 2026-06-17 | 2026-06-20 | Purchaser [24 h] |  | MKH2-02-002-PR-2110 | 0 | 0 | E1630 | CON-LEG101-PR-1550 | PRO | PR-RD |
| JDH4-02-007-PR-1460 |  | Material Fabrication for Interlocking Block Pavers | 30d | 2026-06-04 A | 2026-06-21 A | JDH4-02-007-PR-1450 | 100% | 2026-06-21 | 2026-07-25 | QA/QC Engineer [128 h] |  | MKH2-02-002-PR-2120 | 0 | 0 | E1640 | CON-LEG101-PR-1560 | PRO | PR-RD |
| JDH4-02-007-PR-1470 |  | Material Delivery for Interlocking Block Pavers | 28d | 2026-06-13 A | 2026-07-30 A | JDH4-02-007-PR-1460 | 100% | 2026-07-26 | 2026-08-26 | Cost For Eng,Pro and T&C [21.9]; QA/QC Engineer [32 h] | 179,076.09 | MKH2-02-002-PR-2130 | 0 | 0 | E1650 | CON-LEG101-PR-1570 | PRO | PR-RD |
|  | 9 | **Pavement Markings** |  | 2026-05-07 | 2026-06-21 |  |  |  |  |  |  |  |  |  |  |  |  |  |
| JDH4-02-007-PR-1480 |  | PO for Pavement Markings | 4d | 2026-05-07 A | 2026-06-15 A | JDH4-02-007-MA-1090, JDH4-02-007-PR-1450 | 100% | 2026-06-24 | 2026-06-28 | Purchaser [32 h] |  | MKH2-02-002-PR-2140 | 0 | 0 | E1660 | CON-LEG101-PR-1580 | PRO | PR-RD |
| JDH4-02-007-PR-1500 |  | Material Delivery for Pavement Markings | 28d | 2026-05-24 A | 2026-06-13 A | JDH4-02-007-PR-1490 | 100% | 2026-08-03 | 2026-09-03 | Cost For Eng,Pro and T&C [21.9]; QA/QC Engineer [224 h] | 179,076.09 | MKH2-02-002-PR-2160 | 0 | 0 | E1680 | CON-LEG101-PR-1600 | PRO | PR-RD |
| JDH4-02-007-PR-1490 |  | Material Fabrication for Pavement Markings | 30d | 2026-06-16 A | 2026-06-21 A | JDH4-02-007-PR-1480 | 100% | 2026-06-29 | 2026-08-02 | QA/QC Engineer [112 h] |  | MKH2-02-002-PR-2150 | 0 | 0 | E1670 | CON-LEG101-PR-1590 | PRO | PR-RD |
|  | 10 | **Traffic Signs** |  | 2026-05-11 | 2026-05-31 |  |  |  |  |  |  |  |  |  |  |  |  |  |
| JDH4-02-007-PR-1510 |  | PO for Traffic Signs | 6d | 2026-05-11 A | 2026-05-11 A | JDH4-02-007-MA-1100, JDH4-02-007-PR-1400 | 100% | 2026-06-16 | 2026-06-22 | Purchaser [48 h] |  | MKH2-02-002-PR-2170 | 0 | 0 | E1690 | CON-LEG101-PR-1610 | PRO | PR-RD |
| JDH4-02-007-PR-1520 |  | Material Fabrication for Traffic Signs | 30d | 2026-05-12 A | 2026-05-20 A | JDH4-02-007-PR-1510 | 100% | 2026-06-23 | 2026-07-27 | QA/QC Engineer [152 h] |  | MKH2-02-002-PR-2180 | 0 | 0 | E1700 | CON-LEG101-PR-1620 | PRO | PR-RD |
| JDH4-02-007-PR-1530 |  | Material Delivery for Traffic Signs | 16d | 2026-05-21 A | 2026-05-31 A | JDH4-02-007-PR-1520 | 100% | 2026-07-28 | 2026-08-15 | Cost For Eng,Pro and T&C [21.9]; QA/QC Engineer [128 h] | 179,076.09 | MKH2-02-002-PR-2190 | 0 | 0 | E1710 | CON-LEG101-PR-1630 | PRO | PR-RD |
|  | 7 | **Stormwater Utilities** |  | 2025-12-27 | 2026-05-17 |  |  |  |  |  |  |  |  |  |  |  |  |  |
|  | 7 | **Catch Basins** |  | 2025-12-31 | 2026-03-17 |  |  |  |  |  |  |  |  |  |  |  |  |  |
| JDH4-02-007-PR-1720 |  | PO for Catch Basins | 3d | 2025-12-31 A | 2026-01-03 A | JDH4-02-007-MA-1650 | 100% |  |  | Purchaser [32 h] |  | MKH2-02-002-PR-2530 | 0 | 0 | E1930 | CON-LEG101-PR-1850 | PRO | PR-SD |
| JDH4-02-007-PR-1729 |  | Material Fabrication for Catch Basins - Stage 1 | 45d | 2026-01-03 A | 2026-02-01 A | JDH4-02-007-PR-1720 | 100% | 2026-01-03 | 2026-02-24 | Purchaser [300 h] |  |  |  |  |  |  | PRO | PR-SD |
| JDH4-02-007-PR-1740 |  | Material Delivery for Catch Basins(Completed) | 3d | 2026-01-29 A | 2026-02-01 A | JDH4-02-007-PR-1729 | 100% |  |  | Cost For Eng,Pro and T&C [6.6]; QA/QC Engineer [32 h] | 53,722.83 | MKH2-02-002-PR-2550 | 0.00908283008018919 | 0.908283008018919 | E1950 | CON-LEG101-PR-1870 | PRO | PR-SD |
| JDH4-02-007-PR-1740R |  | Material Delivery for Catch Basins | 25d | 2026-01-29 A | 2026-02-10 A | JDH4-02-007-PR-1730 FF, JDH4-02-007-PR-1370 FF, JDH4-02-007-PR-1320 FF, JDH4-02-007-PR-1740 | 100% | 2026-03-29 | 2026-04-26 | Cost For Eng,Pro and T&C [15.4]; QA/QC Engineer [22.5 h] | 125,353.26 |  |  |  |  |  | PRO |  |
| JDH4-02-007-PR-1729R |  | Material Fabrication for Catch Basins - Stage 1 | 18d | 2026-02-02 A | 2026-02-04 A | JDH4-02-007-PR-1720, JDH4-02-007-PR-1729 FS+15d | 100% | 2026-02-19 | 2026-03-12 | Purchaser [225 h] |  |  |  |  |  |  | PRO |  |
| JDH4-02-007-PR-1730 |  | Material Fabrication for Catch Basins - Stage 2 | 30d | 2026-02-04 A | 2026-03-17 A | JDH4-02-007-PR-1729, JDH4-02-007-PR-1729R | 100% | 2026-03-14 | 2026-04-20 | QA/QC Engineer [480 h] |  | MKH2-02-002-PR-2540 | 0 | 0 | E1940 | CON-LEG101-PR-1860 | PRO | PR-SD |
| JDH4-02-007-PR-1830 |  | Staging Time for Catch Basins | 7d | 2026-02-28 A | 2026-03-07 A | JDH4-02-007-PR-1740, JDH4-02-007-PR-1740R, JDH4-02-007-PR-1530, JDH4-02-007-PR-1370 | 100% | 2026-06-06 | 2026-06-13 | QA/QC Engineer [56 h] |  | MKH2-02-002-PR-4860 | 0 | 0 | E2290 | CON-LEG101-PR-1990 | PRO | PR-SD |

| ID | WBS | Activity | Duration | Start | Finish | Predecessors | Complete | Planned start | Planned finish | Resources | Cost | USERTEXT | Weight 1 | Total Weight % | Mapping Sheet Activity ID | Old Activity ID | Construction | Procurement |
| --- | --- | --- | --- | --- | --- | --- | --- | --- | --- | --- | --- | --- | --- | --- | --- | --- | --- | --- |
|  | 2 | **GRP Pipes** |  | 2025-12-27 | 2026-03-17 |  |  |  |  |  |  |  |  |  |  |  |  |  |
| JDH4-02-007-PR-1660 |  | PO for GRP Pipes | 3d | 2025-12-27 A | 2025-12-29 A | JDH4-02-007-MA-1270 | 100% |  |  | Purchaser [40 h] |  | MKH2-02-002-PR-2380 | 0 | 0 | E1870 | CON-LEG101-PR-1790 | PRO | PR-SD |
| JDH4-02-007-PR-1670 |  | Material Fabrication for GRP Pipes | 63d | 2025-12-27 A | 2026-02-01 A | JDH4-02-007-PR-1660 | 100% | 2025-12-27 | 2026-03-10 | QA/QC Engineer [320 h] |  | MKH2-02-002-PR-2390 | 0 | 0 | E1880 | CON-LEG101-PR-1800 | PRO | PR-SD |
| JDH4-02-007-PR-1680 |  | Material Delivery for GRP Pipes(Completed) | 32d | 2025-12-27 A | 2026-02-01 A | JDH4-02-007-PR-1670 SS, JDH4-02-007-PR-1670 FF | 100% |  |  | Cost For Eng,Pro and T&C [12.1]; QA/QC Engineer [224 h] | 196,983.7 | MKH2-02-002-PR-2400 | 0.00908283008018919 | 0.908283008018919 | E1890 | CON-LEG101-PR-1810 | PRO | PR-SD |
| JDH4-02-007-PR-1670R |  | Material Fabrication for GRP Pipes | 30d | 2026-02-02 A | 2026-03-09 A | JDH4-02-007-PR-1660, JDH4-02-007-PR-1670 FS+10d | 100% | 2026-02-14 | 2026-03-24 | QA/QC Engineer [240 h] |  |  |  |  |  |  | PRO |  |
| JDH4-02-007-PR-1680R |  | Material Delivery for GRP Pipes | 28d | 2026-02-02 A | 2026-03-17 A | JDH4-02-007-PR-1670 SS, JDH4-02-007-PR-1670 FF, JDH4-02-007-PR-1680, JDH4-02-007-PR-1670R | 100% | 2026-03-25 | 2026-04-26 | Cost For Eng,Pro and T&C [9.9]; QA/QC Engineer [165 h] | 161,168.48 |  |  |  |  |  | PRO |  |
|  | 6 | **Inlet Manholes** |  | 2026-01-01 | 2026-05-17 |  |  |  |  |  |  |  |  |  |  |  |  |  |
| JDH4-02-007-PR-1690 |  | PO for Inlet Manholes | 2d | 2026-01-01 A | 2026-01-03 A | JDH4-02-007-MA-1290 | 100% |  |  | Purchaser [40 h] |  | MKH2-02-002-PR-2500 | 0 | 0 | E1900 | CON-LEG101-PR-1820 | PRO | PR-SD |
| JDH4-02-007-PR-1700 |  | Material Fabrication for Inlet Manholes | 57d | 2026-01-03 A | 2026-02-01 A | JDH4-02-007-PR-1690 | 100% | 2026-01-03 | 2026-03-10 | QA/QC Engineer [488 h] |  | MKH2-02-002-PR-2510 | 0 | 0 | E1910 | CON-LEG101-PR-1830 | PRO | PR-SD |
| JDH4-02-007-PR-1710 |  | Material Delivery for Inlet Manholes(Completed) | 22d | 2026-01-07 A | 2026-02-01 A | JDH4-02-007-PR-1700 SS, JDH4-02-007-PR-1700 FF | 100% |  |  | Cost For Eng,Pro and T&C [14]; QA/QC Engineer [96 h] | 71,630.44 | MKH2-02-002-PR-2520 | 0.00908283008018919 | 0.908283008018919 | E1920 | CON-LEG101-PR-1840 | PRO | PR-SD |
| JDH4-02-007-PR-1700R |  | Material Fabrication for Inlet Manholes | 30d | 2026-02-02 A | 2026-05-07 A | JDH4-02-007-PR-1690, JDH4-02-007-PR-1700 FS+10d | 100% | 2026-02-14 | 2026-03-24 | QA/QC Engineer [367.5 h] |  |  |  |  |  |  | PRO |  |
| JDH4-02-007-PR-1710R |  | Material Delivery for Inlet Manholes | 30d | 2026-02-02 A | 2026-05-17 A | JDH4-02-007-PR-1700 SS, JDH4-02-007-PR-1700 FF, JDH4-02-007-PR-1710 FF, JDH4-02-007-PR-1700R SS+3d | 100% | 2026-02-17 | 2026-03-28 | Cost For Eng,Pro and T&C [21]; QA/QC Engineer [75 h] | 107,445.65 |  |  |  |  |  | PRO |  |
|  | 6 | **Sanitary Sewerage** |  | 2025-12-27 | 2026-05-06 |  |  |  |  |  |  |  |  |  |  |  |  |  |
|  | 1 | **GRP Pipes** |  | 2025-12-27 | 2026-03-25 |  |  |  |  |  |  |  |  |  |  |  |  |  |
| JDH4-02-007-PR-1600 |  | PO for GRP Pipes | 3d | 2025-12-27 A | 2025-12-29 A | JDH4-02-007-MA-1230 | 100% |  |  | Purchaser [32 h] |  | MKH2-02-002-PR-2290 | 0 | 0 | E1780 | CON-LEG101-PR-1700 | PRO | PR-SW |
| JDH4-02-007-PR-1610 |  | Material Fabrication for GRP Pipes | 60d | 2025-12-30 A | 2026-02-01 A | JDH4-02-007-PR-1600 | 100% | 2025-12-30 | 2026-03-10 | QA/QC Engineer [112 h] |  | MKH2-02-002-PR-2300 | 0 | 0 | E1790 | CON-LEG101-PR-1710 | PRO | PR-SW |
| JDH4-02-007-PR-1620 |  | Material Delivery for GRP Pipes(Completed) | 3d | 2026-01-29 A | 2026-02-01 A | JDH4-02-007-PR-1610 SS, JDH4-02-007-PR-1610 FF | 100% |  |  | Cost For Eng,Pro and T&C [1.1]; QA/QC Engineer [32 h] | 17,907.61 | MKH2-02-002-PR-2310 | 0.00625680927491391 | 0.625680927491391 | E1800 | CON-LEG101-PR-1720 | PRO | PR-SW |
| JDH4-02-007-PR-1610R |  | Material Fabrication for GRP Pipes | 30d | 2026-02-02 A | 2026-03-09 A | JDH4-02-007-PR-1600, JDH4-02-007-PR-1610 FS+10d | 100% | 2026-02-14 | 2026-03-24 | QA/QC Engineer [82.5 h] |  |  |  |  |  |  | PRO |  |
| JDH4-02-007-PR-1620R |  | Material Delivery for GRP Pipes | 20d | 2026-02-02 A | 2026-03-25 A | JDH4-02-007-PR-1610, JDH4-02-007-PR-1610 FF, JDH4-02-007-PR-1620, JDH4-02-007-PR-1610R | 100% | 2026-03-25 | 2026-04-16 | Cost For Eng,Pro and T&C [20.9]; QA/QC Engineer [22.5 h] | 340,244.57 |  |  |  |  |  | PRO |  |
|  | 2 | **Manholes** |  | 2026-01-01 | 2026-05-06 |  |  |  |  |  |  |  |  |  |  |  |  |  |
| JDH4-02-007-PR-1630 |  | PO for Manholes | 3d | 2026-01-01 A | 2026-01-04 A | JDH4-02-007-MA-1260 | 100% |  |  | Purchaser [72 h] |  | MKH2-02-002-PR-2320 | 0 | 0 | E1810 | CON-LEG101-PR-1730 | PRO | PR-SW |
| JDH4-02-007-PR-1638 |  | Material Fabrication for Manholes - Stage 1 | 5d | 2026-01-04 A | 2026-01-08 A | JDH4-02-007-PR-1630 | 100% |  |  | Purchaser [290 h] |  |  |  |  |  |  | PRO | PR-SW |
| JDH4-02-007-PR-1650 |  | Material Delivery for Manholes(Completed) | 20d | 2026-01-10 A | 2026-02-01 A | JDH4-02-007-PR-1620 | 100% |  |  | Cost For Eng,Pro and T&C [9.9]; QA/QC Engineer [136 h] | 161,168.48 | MKH2-02-002-PR-2340 | 0.00625680927491391 | 0.625680927491391 | E1830 | CON-LEG101-PR-1750 | PRO | PR-SW |
| JDH4-02-007-PR-1650R |  | Material Delivery for Manholes | 17d | 2026-02-03 A | 2026-05-06 A | JDH4-02-007-PR-1650, JDH4-02-007-PR-1640 | 100% | 2026-04-16 | 2026-05-05 | Cost For Eng,Pro and T&C [12.1]; QA/QC Engineer [105 h] | 196,983.69 |  |  |  |  |  | PRO |  |
| JDH4-02-007-PR-1639 |  | Material Fabrication for Manholes - Stage 2 | 20d | 2026-02-09 A | 2026-03-11 A | JDH4-02-007-PR-1638 FS+35d | 100% | 2026-02-25 | 2026-03-23 | Purchaser [200 h] |  |  |  |  |  |  | PRO | PR-SW |
| JDH4-02-007-PR-1640 |  | Material Fabrication for Manholes - Stage 3 | 20d | 2026-03-12 A | 2026-04-27 A | JDH4-02-007-PR-1639 | 100% | 2026-04-07 | 2026-04-29 | QA/QC Engineer [552 h] |  | MKH2-02-002-PR-2330 | 0 | 0 | E1820 | CON-LEG101-PR-1740 | PRO | PR-SW |

| ID | WBS | Activity | Duration | Start | Finish | Predecessors | Complete | Planned start | Planned finish | Resources | Cost | USERTEXT | Weight 1 | Total Weight % | Mapping Sheet Activity ID | Old Activity ID | Construction | Procurement |
| --- | --- | --- | --- | --- | --- | --- | --- | --- | --- | --- | --- | --- | --- | --- | --- | --- | --- | --- |
|  | 5 | **TSE Network** |  | 2026-01-01 | 2026-02-09 |  |  |  |  |  |  |  |  |  |  |  |  |  |
|  | 1 | **HDPE Pipe (PN 16)** |  | 2026-01-01 | 2026-02-09 |  |  |  |  |  |  |  |  |  |  |  |  |  |
| JDH4-02-007-PR-1570 |  | PO for HDPE Pipe (PN 16) | 4d | 2026-01-01 A | 2026-01-05 A | JDH4-02-007-MA-1210 | 100% |  |  | Purchaser [40 h] |  | MKH2-02-002-PR-2260 | 0 | 0 | E1750 | CON-LEG101-PR-1670 | PRO | PR-TSE |
| JDH4-02-007-PR-1580 |  | Material Fabrication for HDPE Pipe (PN 16) | 53d | 2026-01-01 A | 2026-02-01 A | JDH4-02-007-PR-1570 | 100% | 2026-01-01 | 2026-03-04 | QA/QC Engineer [120 h] |  | MKH2-02-002-PR-2270 | 0 | 0 | E1760 | CON-LEG101-PR-1680 | PRO | PR-TSE |
| JDH4-02-007-PR-1590 |  | Material Delivery for HDPE Pipe (PN 16)(Completed) | 26d | 2026-01-03 A | 2026-02-01 A | JDH4-02-007-PR-1580 SS, JDH4-02-007-PR-1580 FF | 100% |  |  | Cost For Eng,Pro and T&C [20.24]; QA/QC Engineer [32 h] | 164,750 | MKH2-02-002-PR-2280 | 0.00287792953136441 | 0.287792953136441 | E1770 | CON-LEG101-PR-1690 | PRO | PR-TSE |
| JDH4-02-007-PR-1580R |  | Material Fabrication for HDPE Pipe (PN 16) | 25d | 2026-02-02 A | 2026-02-03 A | JDH4-02-007-PR-1570, JDH4-02-007-PR-1580 FS+10d | 100% | 2026-02-14 | 2026-03-15 | QA/QC Engineer [90 h] |  |  |  |  |  |  | PRO |  |
| JDH4-02-007-PR-1590R |  | Material Delivery for HDPE Pipe (PN 16) | 30d | 2026-02-02 A | 2026-02-09 A | JDH4-02-007-PR-1580 SS, JDH4-02-007-PR-1580 FF, JDH4-02-007-PR-1590, JDH4-02-007-PR-1580R | 100% | 2026-03-16 | 2026-04-22 | Cost For Eng,Pro and T&C [1.76]; QA/QC Engineer [22.5 h] | 14,326.09 |  |  |  |  |  | PRO |  |
|  | 4 | **Potable Water Network** |  | 2026-01-01 | 2026-02-09 |  |  |  |  |  |  |  |  |  |  |  |  |  |
|  | 1 | **HDPE Pipe (PN 16)** |  | 2026-01-01 | 2026-02-09 |  |  |  |  |  |  |  |  |  |  |  |  |  |
| JDH4-02-007-PR-1540 |  | PO for HDPE Pipe (PN 16) | 2d | 2026-01-01 A | 2026-01-03 A | JDH4-02-007-MA-1190 | 100% |  |  | Purchaser [40 h] |  | MKH2-02-002-PR-2200 | 0 | 0 | E1720 | CON-LEG101-PR-1640 | PRO | PR-PW |
| JDH4-02-007-PR-1550 |  | Material Fabrication for HDPE Pipe (PN 16) | 52d | 2026-01-03 A | 2026-02-01 A | JDH4-02-007-PR-1540 | 100% | 2026-01-03 | 2026-03-04 | QA/QC Engineer [112 h] |  | MKH2-02-002-PR-2210 | 0 | 0 | E1730 | CON-LEG101-PR-1650 | PRO | PR-PW |
| JDH4-02-007-PR-1560 |  | Material Delivery for HDPE Pipe (PN 16)(Completed) | 26d | 2026-01-03 A | 2026-02-01 A | JDH4-02-007-PR-1550 SS, JDH4-02-007-PR-1550 FF | 100% |  |  | Cost For Eng,Pro and T&C [18.26]; QA/QC Engineer [32 h] | 148,633.15 | MKH2-02-002-PR-2220 | 0.0028203695418334 | 0.28203695418334 | E1740 | CON-LEG101-PR-1660 | PRO | PR-PW |
| JDH4-02-007-PR-1550R |  | Material Fabrication for HDPE Pipe (PN 16) | 25d | 2026-02-02 A | 2026-02-03 A | JDH4-02-007-PR-1540, JDH4-02-007-PR-1550 | 100% | 2026-02-11 | 2026-03-12 | QA/QC Engineer [82.5 h] |  |  |  |  |  |  | PRO |  |
| JDH4-02-007-PR-1560R |  | Material Delivery for HDPE Pipe (PN 16) | 30d | 2026-02-02 A | 2026-02-09 A | JDH4-02-007-PR-1550 SS, JDH4-02-007-PR-1550 FF, JDH4-02-007-PR-1560, JDH4-02-007-PR-1550R | 100% | 2026-03-14 | 2026-04-20 | Cost For Eng,Pro and T&C [3.74]; QA/QC Engineer [22.5 h] | 30,442.94 |  |  |  |  |  | PRO |  |
|  | 3 | **Electrical Network** |  | 2026-02-01 | 2026-04-23 |  |  |  |  |  |  |  |  |  |  |  |  |  |
|  | 1 | **Pipe for the Duct** |  | 2026-02-01 | 2026-04-22 |  |  |  |  |  |  |  |  |  |  |  |  |  |
| JDH4-02-007-PR-1190 |  | PO for Pipe for Duct | 6d | 2026-02-01 A | 2026-02-04 A | JDH4-02-007-MA-1130 FS+30d | 100% | 2026-03-04 | 2026-03-10 | Purchaser [48 h] |  | MKH2-02-002-PR-1320 | 0 | 0 | E1260 | CON-LEG101-PR-1260 | PRO | PR-EE |
| JDH4-02-007-PR-1210 |  | Material Fabrication for Pipe for Duct | 30d | 2026-02-05 A | 2026-04-09 A | JDH4-02-007-PR-1190 | 100% | 2026-03-11 | 2026-04-18 | QA/QC Engineer [144 h] |  | MKH2-02-002-PR-1360 | 0 | 0 | E1300 | CON-LEG101-PR-1290 | PRO | PR-EE |
| JDH4-02-007-PR-1230 |  | Material Delivery for Pipe for Duct | 25d | 2026-02-11 A | 2026-04-22 A | JDH4-02-007-PR-1210 | 100% | 2026-04-19 | 2026-05-17 | Cost For Eng,Pro and T&C [43.8]; QA/QC Engineer [48 h] | 179,075.95 | MKH2-02-002-PR-1400 | 0.00245815896638331 | 0.245815896638331 | E1340 | CON-LEG101-PR-1320 | PRO | PR-EE |
|  | 4 | **Earthing System** |  | 2026-03-18 | 2026-04-23 |  |  |  |  |  |  |  |  |  |  |  |  |  |
| JDH4-02-007-PR-1180 |  | PO for Earthing System | 7d | 2026-03-18 A | 2026-03-22 A | JDH4-02-007-MA-1170 FS+30d | 100% | 2026-04-29 | 2026-05-06 | Purchaser [56 h] |  | MKH2-02-002-PR-1310 | 0 | 0 | E1250 | CON-LEG101-PR-1250 | PRO | PR-EE |
| JDH4-02-007-PR-1200 |  | Material Fabrication for Earthing System | 30d | 2026-03-23 A | 2026-03-26 A | JDH4-02-007-PR-1180 | 100% | 2026-05-07 | 2026-06-14 | QA/QC Engineer [168 h] |  | MKH2-02-002-PR-1350 | 0 | 0 | E1290 | CON-LEG101-PR-1280 | PRO | PR-EE |
| JDH4-02-007-PR-1220 |  | Material Delivery for Earthing System | 28d | 2026-03-29 A | 2026-04-23 A | JDH4-02-007-PR-1200, JDH4-02-007-PR-1520, JDH4-02-007-PR-1460, JDH4-02-007-PR-1430, JDH4-02-007-PR-1340, JDH4-02-007-PR-1460 SS | 100% | 2026-06-28 | 2026-07-29 | Cost For Eng,Pro and T&C [43.8]; QA/QC Engineer [64 h] | 179,076.09 | MKH2-02-002-PR-1390 | 0.00245815896638331 | 0.245815896638331 | E1330 | CON-LEG101-PR-1310 | PRO | PR-EE |
|  | 10 | **Telecommunications** |  | 2026-01-20 | 2026-02-08 |  |  |  |  |  |  |  |  |  |  |  |  |  |
|  | 1 | **Pipe for the Duct** |  | 2026-01-20 | 2026-02-08 |  |  |  |  |  |  |  |  |  |  |  |  |  |
| JDH4-02-007-PR-2260 |  | PO for Pipe for Duct | 2d | 2026-01-20 A | 2026-01-21 A | JDH4-02-007-MA-1550 | 100% |  |  | Purchaser [32 h] |  | MKH2-02-002-PR-1320 | 0 | 0 | E3720 | CON-LEG101-PR-3160 | PRO | PR-EE |
| JDH4-02-007-PR-2270 |  | Material Fabrication for Pipe for Duct | 8d | 2026-01-25 A | 2026-02-01 A | JDH4-02-007-PR-2260 | 100% | 2026-01-25 | 2026-02-02 | QA/QC Engineer [128 h] |  | MKH2-02-002-PR-1360 | 0 | 0 | E3750 | CON-LEG101-PR-3170 | PRO | PR-EE |
| JDH4-02-007-PR-2280 |  | Material Delivery for Pipe for Duct(Completed) | 2d | 2026-01-31 A | 2026-02-01 A | JDH4-02-007-PR-1620 SS, JDH4-02-007-PR-1620 FF | 100% |  |  | Cost For Eng,Pro and T&C [17.6]; QA/QC Engineer [48 h] | 71,630.44 | MKH2-02-002-PR-1400 | 0.00245815896638331 | 0.245815896638331 | E3780 | CON-LEG101-PR-3180 | PRO | PR-EE |
| JDH4-02-007-PR-2270R |  | Material Fabrication for Pipe for Duct | 9.75d | 2026-02-02 A | 2026-02-04 A | JDH4-02-007-PR-2260, JDH4-02-007-PR-2270, JDH4-02-007-PR-1210 | 100% | 2026-04-02 | 2026-04-13 | QA/QC Engineer [97.5 h] |  |  |  |  |  |  | PRO |  |
| JDH4-02-007-PR-2280R |  | Material Delivery for Pipe for Duct | 28d | 2026-02-02 A | 2026-02-08 A | JDH4-02-007-PR-2270 SS, JDH4-02-007-PR-2270 FF, JDH4-02-007-PR-1620 SS, JDH4-02-007-PR-1620 FF, JDH4-02-007-PR-1520 FF, JDH4-02-007-PR-2280, JDH4-02-007-PR-2270R | 100% | 2026-04-13 | 2026-05-16 | Cost For Eng,Pro and T&C [26.4]; QA/QC Engineer [37.5 h] | 107,445.65 |  |  |  |  |  | PRO |  |

| ID | WBS | Activity | Duration | Start | Finish | Predecessors | Complete | Planned start | Planned finish | Resources | Cost | USERTEXT | Weight 1 | Total Weight % | Mapping Sheet Activity ID | Old Activity ID | Construction | Procurement |
| --- | --- | --- | --- | --- | --- | --- | --- | --- | --- | --- | --- | --- | --- | --- | --- | --- | --- | --- |
|  | 9 | **Sewage Lift Station** |  | 2026-02-02 | 2026-08-12 |  |  |  |  |  |  |  |  |  |  |  |  |  |
|  | 7 | **Thermal & Moisture Protection** |  | 2026-03-04 | 2026-04-18 |  |  |  |  |  |  |  |  |  |  |  |  |  |
| JDH4-02-007-PR-2350 |  | PO for Thermal & Moisture Protection | 4d | 2026-03-04 A | 2026-03-12 A | JDH4-02-007-MA-1510 | 100% | 2026-06-10 | 2026-06-14 | Purchaser [32 h] |  | MKH2-02-002-PR-2350 | 0 | 0 | E2300 | CON-LEG101-PR-3360 | PRO | PR-SL |
| JDH4-02-007-PR-2358 |  | Material Fabrication for Thermal & Moisture Protection - Stage 1 | 20d | 2026-03-14 A | 2026-03-16 A | JDH4-02-007-PR-2350 | 100% | 2026-06-15 | 2026-07-07 | Purchaser [200 h] |  |  |  |  |  |  | PRO | PR-SL |
| JDH4-02-007-PR-2359 |  | Material Fabrication for Thermal & Moisture Protection - Stage 2 | 20d | 2026-03-17 A | 2026-03-19 A | JDH4-02-007-PR-2358, JDH4-02-007-MA-2210 | 100% | 2026-07-08 | 2026-07-30 | Purchaser [200 h] |  |  |  |  |  |  | PRO | PR-SL |
| JDH4-02-007-PR-2360 |  | Material Fabrication for Thermal & Moisture Protection - Stage 3 | 29d | 2026-03-21 A | 2026-03-25 A | JDH4-02-007-PR-2359 | 100% | 2026-08-01 | 2026-09-02 | QA/QC Engineer [552 h] |  | MKH2-02-002-PR-2360 | 0 | 0 | E2310 | CON-LEG101-PR-3370 | PRO | PR-SL |
| JDH4-02-007-PR-2369 |  | Material Delivery for Thermal & Moisture Protection - Stage 1 | 24d | 2026-03-30 A | 2026-04-05 A | JDH4-02-007-PR-2360, JDH4-02-007-PR-1500, JDH4-02-007-PR-1470 | 100% | 2026-09-03 | 2026-10-01 | Purchaser [240 h] |  |  |  |  |  |  | PRO | PR-SL |
| JDH4-02-007-PR-2370 |  | Material Delivery for Thermal & Moisture Protection - Stage 2 | 24d | 2026-04-06 A | 2026-04-18 A | JDH4-02-007-PR-1220, JDH4-02-007-PR-1230, JDH4-02-007-PR-2369, JDH4-02-007-PR-1650, JDH4-02-007-PR-1650R | 100% | 2026-10-03 | 2026-10-29 | Cost For Eng,Pro and T&C [21.9]; QA/QC Engineer [384 h] | 179,076.09 | MKH2-02-002-PR-2370 | 8.40139651145538E-005 | 0.00840139651145538 | E2320 | CON-LEG101-PR-3380 | PRO | PR-SL |
|  | 1 | **Metals** |  | 2026-03-03 | 2026-06-24 |  |  |  |  |  |  |  |  |  |  |  |  |  |
| JDH4-02-007-PR-1840 |  | PO for Metal | 4d | 2026-03-03 A | 2026-03-11 A | JDH4-02-007-MA-1500 | 100% | 2026-03-22 | 2026-03-25 | Purchaser [32 h] |  | MKH2-02-002-PR-2350 | 0 | 0 | E2300 | CON-LEG101-PR-2000 | PRO | PR-SL |
| JDH4-02-007-PR-1848 |  | Material Fabrication for Metal - Stage 1 | 29d | 2026-03-12 A | 2026-04-09 A | JDH4-02-007-PR-1840 | 100% | 2026-03-26 | 2026-04-28 | Purchaser [290 h] |  |  |  |  |  |  | PRO | PR-SL |
| JDH4-02-007-PR-1849 |  | Material Fabrication for Metal - Stage 2 | 20d | 2026-04-11 A | 2026-04-23 A | JDH4-02-007-PR-1848 | 100% | 2026-07-01 | 2026-07-25 | Purchaser [200 h] |  |  |  |  |  |  | PRO | PR-SL |
| JDH4-02-007-PR-1850 |  | Material Fabrication for Metal - Stage 3 | 20d | 2026-04-25 A | 2026-05-07 A | JDH4-02-007-PR-1849, JDH4-02-007-PR-1560, JDH4-02-007-PR-1590, JDH4-02-007-PR-1680, JDH4-02-007-PR-1560R, JDH4-02-007-PR-1590R, JDH4-02-007-PR-1680R | 100% | 2026-07-25 | 2026-08-17 | QA/QC Engineer [552 h] |  | MKH2-02-002-PR-2360 | 0 | 0 | E2310 | CON-LEG101-PR-2010 | PRO | PR-SL |
| JDH4-02-007-PR-1859 |  | Material Delivery for Metal - Stage 1 | 18d | 2026-06-11 A | 2026-06-24 A | JDH4-02-007-PR-1850, JDH4-02-007-PR-2280, JDH4-02-007-PR-1220, JDH4-02-007-PR-2280R | 100% | 2026-07-01 | 2026-07-21 | Purchaser [180 h] |  |  |  |  |  |  | PRO | PR-SL |
| JDH4-02-007-PR-1860 |  | Material Delivery for Metal - Stage 2 | 30d | 2026-06-11 A | 2026-06-24 A | JDH4-02-007-PR-1859 | 100% | 2026-07-22 | 2026-08-25 | Cost For Eng,Pro and T&C [21.9]; QA/QC Engineer [384 h] | 179,076.09 | MKH2-02-002-PR-2370 | 8.40139651145538E-005 | 0.00840139651145538 | E2320 | CON-LEG101-PR-2020 | PRO | PR-SL |
|  | 5 | **Pipes** |  | 2026-02-02 | 2026-04-18 |  |  |  |  |  |  |  |  |  |  |  |  |  |
| JDH4-02-007-PR-2290 |  | PO for Pipes | 4d | 2026-02-02 A | 2026-02-04 A | JDH4-02-007-SB-1700, JDH4-02-007-MA-1700 | 100% | 2026-03-22 | 2026-03-25 | Purchaser [32 h] |  | MKH2-02-002-PR-2350 | 0 | 0 | E2330 | CON-LEG101-PR-3300 | PRO | PR-SL |
| JDH4-02-007-PR-2300 |  | Material Fabrication for Pipes | 30d | 2026-02-11 A | 2026-04-15 A | JDH4-02-007-PR-2290 | 100% | 2026-03-26 | 2026-04-29 | QA/QC Engineer [112 h] |  | MKH2-02-002-PR-2360 | 0 | 0 | E2340 | CON-LEG101-PR-3310 | PRO | PR-SL |
| JDH4-02-007-PR-2310 |  | Material Delivery for Pipes | 28d | 2026-04-12 A | 2026-04-18 A | JDH4-02-007-PR-2300 | 100% | 2026-05-31 | 2026-07-01 | Cost For Eng,Pro and T&C [21.9]; QA/QC Engineer [144 h] | 179,076.09 | MKH2-02-002-PR-2370 | 8.40139651145538E-005 | 0.00840139651145538 | E2350 | CON-LEG101-PR-3320 | PRO | PR-SL |
|  | 8 | **Air Conditioning and Ventilation** |  | 2026-03-04 | 2026-04-19 |  |  |  |  |  |  |  |  |  |  |  |  |  |
| JDH4-02-007-PR-2380 |  | PO for Air Conditioning and Ventilation | 4d | 2026-03-04 A | 2026-03-11 A | JDH4-02-007-MA-1770, JDH4-02-007-PR-2290 FS+10d | 100% | 2026-04-07 | 2026-04-11 | Purchaser [32 h] |  | MKH2-02-002-PR-2350 | 0 | 0 | E2330 | CON-LEG101-PR-3390 | PRO | PR-SL |
| JDH4-02-007-PR-2390 |  | Material Fabrication for Air Conditioning and Ventilation | 30d | 2026-03-12 A | 2026-04-15 A | JDH4-02-007-PR-2380 | 100% | 2026-04-12 | 2026-05-16 | QA/QC Engineer [112 h] |  | MKH2-02-002-PR-2360 | 0 | 0 | E2340 | CON-LEG101-PR-3400 | PRO | PR-SL |
| JDH4-02-007-PR-2400 |  | Material Delivery for Air Conditioning and Ventilation | 28d | 2026-04-14 A | 2026-04-19 A | JDH4-02-007-PR-2390, JDH4-02-007-PR-2310 | 100% | 2026-07-02 | 2026-08-03 | Cost For Eng,Pro and T&C [21.9]; QA/QC Engineer [144 h] | 179,076.09 | MKH2-02-002-PR-2370 | 8.40139651145538E-005 | 0.00840139651145538 | E2350 | CON-LEG101-PR-3410 | PRO | PR-SL |
|  | 2 | **Fuel System** |  | 2026-07-15 | 2026-08-12 |  |  |  |  |  |  |  |  |  |  |  |  |  |
| JDH4-02-007-PR-1870 |  | PO forFabrication for Fuel System | 4d | 2026-07-15 A | 2026-07-16 A | JDH4-02-007-MA-1790, JDH4-02-007-MA-1790R, JDH4-02-007-PR-2380 | 100% | 2026-08-26 | 2026-08-30 | Purchaser [32 h] |  | MKH2-02-002-PR-2350 | 0 | 0 | E2330 | CON-LEG101-PR-2030 | PRO | PR-SL |
| JDH4-02-007-PR-1880 |  | Material Fabrication for Fuel System | 30d | 2026-07-18 A | 2026-08-05 A | JDH4-02-007-PR-1870 | 100% | 2026-08-31 | 2026-10-05 | QA/QC Engineer [112 h] |  | MKH2-02-002-PR-2360 | 0 | 0 | E2340 | CON-LEG101-PR-2040 | PRO | PR-SL |
| JDH4-02-007-PR-1890 |  | Material Delivery for Fuel System | 28d | 2026-08-10 A | 2026-08-12 A | JDH4-02-007-PR-1880, JDH4-02-007-PR-2400, JDH4-02-007-PR-2400 FF | 100% | 2026-10-06 | 2026-11-07 | Cost For Eng,Pro and T&C [21.9]; QA/QC Engineer [144 h] | 179,076.09 | MKH2-02-002-PR-2370 | 8.40139651145538E-005 | 0.00840139651145538 | E2350 | CON-LEG101-PR-2050 | PRO | PR-SL |

| ID | WBS | Activity | Duration | Start | Finish | Predecessors | Complete | Planned start | Planned finish | Resources | Cost | USERTEXT | Weight 1 | Total Weight % | Mapping Sheet Activity ID | Old Activity ID | Construction | Procurement |
| --- | --- | --- | --- | --- | --- | --- | --- | --- | --- | --- | --- | --- | --- | --- | --- | --- | --- | --- |
|  | 6 | **Fire Fighting System** |  | 2026-07-15 | 2026-08-12 |  |  |  |  |  |  |  |  |  |  |  |  |  |
| JDH4-02-007-PR-2320 |  | PO for Fire Fighting System | 4d | 2026-07-15 A | 2026-07-16 A | JDH4-02-007-MA-1930, JDH4-02-007-PR-2290 | 100% | 2026-08-26 | 2026-08-30 | Purchaser [32 h] |  | MKH2-02-002-PR-2350 | 0 | 0 | E2910 | CON-LEG101-PR-3330 | PRO | PR-SL |
| JDH4-02-007-PR-2330 |  | Material Fabrication for Fire Fighting System | 30d | 2026-07-18 A | 2026-08-06 A | JDH4-02-007-PR-2320 | 100% | 2026-08-31 | 2026-10-05 | QA/QC Engineer [104 h] |  | MKH2-02-002-PR-2360 | 0 | 0 | E2920 | CON-LEG101-PR-3340 | PRO | PR-SL |
| JDH4-02-007-PR-2340 |  | Material Delivery for Fire Fighting System | 28d | 2026-08-10 A | 2026-08-12 A | JDH4-02-007-PR-2330, JDH4-02-007-PR-1490, JDH4-02-007-PR-1890, JDH4-02-007-PR-1890 FF | 100% | 2026-11-08 | 2026-12-09 | Cost For Eng,Pro and T&C [21.9]; QA/QC Engineer [144 h] | 179,076.09 | MKH2-02-002-PR-2370 | 8.40139651145538E-005 | 0.00840139651145538 | E2930 | CON-LEG101-PR-3350 | PRO | PR-SL |
|  | 9 | **Security System (CCTV System)** |  | 2026-02-28 | 2026-04-11 |  |  |  |  |  |  |  |  |  |  |  |  |  |
| JDH4-02-007-PR-2410 |  | PO for Security System (CCTV System) | 4d | 2026-02-28 A | 2026-03-02 A | JDH4-02-007-MA-2090, JDH4-02-007-PR-2380, JDH4-02-007-PR-1550R, JDH4-02-007-PR-2330 | 100% | 2026-05-18 | 2026-05-21 | Purchaser [32 h] |  | MKH2-02-002-PR-2350 | 0 | 0 | E2910 | CON-LEG101-PR-3420 | PRO | PR-SL |
| JDH4-02-007-PR-2420 |  | Material Fabrication for Security System (CCTV System) | 30d | 2026-03-03 A | 2026-03-25 A | JDH4-02-007-PR-2410 | 100% | 2026-05-23 | 2026-06-29 | QA/QC Engineer [104 h] |  | MKH2-02-002-PR-2360 | 0 | 0 | E2920 | CON-LEG101-PR-3430 | PRO | PR-SL |
| JDH4-02-007-PR-2430 |  | Material Delivery for Security System (CCTV System) | 28d | 2026-04-02 A | 2026-04-11 A | JDH4-02-007-PR-2420, JDH4-02-007-PR-2340 | 100% | 2026-09-26 | 2026-10-27 | Cost For Eng,Pro and T&C [21.9]; QA/QC Engineer [144 h] | 179,076.09 | MKH2-02-002-PR-2370 | 8.40139651145538E-005 | 0.00840139651145538 | E2930 | CON-LEG101-PR-3440 | PRO | PR-SL |
|  | 1 | **Long Lead Item** |  | 2026-01-25 | 2026-10-06 |  |  |  |  |  |  |  |  |  |  |  |  |  |
|  | 3 | **TSE Network** |  | 2026-02-23 | 2026-05-04 |  |  |  |  |  |  |  |  |  |  |  |  |  |
|  | 1 | **Valves / Chambers** |  | 2026-02-23 | 2026-03-31 |  |  |  |  |  |  |  |  |  |  |  |  |  |
| JDH4-02-007-PR-1270 |  | PO for Valves / Chambers | 5d | 2026-02-23 A | 2026-02-25 A | JDH4-02-007-MA-1450 FS+30d | 100% | 2026-04-08 | 2026-04-13 | Purchaser [40 h] |  | MKH2-02-002-PR-1480 | 0 | 0 | E1420 | CON-LEG101-PR-1360 | PRO | PR-TSE |
| JDH4-02-007-PR-1277 |  | Material Fabrication for Valves / Chambers - Stage 1 | 8d | 2026-02-25 A | 2026-02-28 A | JDH4-02-007-PR-1270 | 100% | 2026-04-14 | 2026-04-22 | Purchaser [80 h] |  |  |  |  |  |  | PRO | PR-TSE |
| JDH4-02-007-PR-1278 |  | Material Fabrication for Valves / Chambers - Stage 2 | 30d | 2026-02-26 A | 2026-03-01 A | JDH4-02-007-PR-1277 | 100% | 2026-04-23 | 2026-05-31 | Purchaser [300 h] |  |  |  |  |  |  | PRO | PR-TSE |
| JDH4-02-007-PR-1279 |  | Material Fabrication for Valves / Chambers - Stage 3 | 20d | 2026-02-28 A | 2026-03-04 A | JDH4-02-007-PR-1278 | 100% | 2026-06-01 | 2026-06-23 | Purchaser [300 h] |  |  |  |  |  |  | PRO | PR-TSE |
| JDH4-02-007-PR-1280 |  | Material Fabrication for Valves / Chambers - Stage 4 | 20d | 2026-03-04 A | 2026-03-07 A | JDH4-02-007-PR-1279 | 100% | 2026-06-24 | 2026-07-16 | QA/QC Engineer [784 h] |  | MKH2-02-002-PR-1490 | 0 | 0 | E1430 | CON-LEG101-PR-1370 | PRO | PR-TSE |
| JDH4-02-007-PR-1290 |  | Material Delivery for Valves / Chambers | 18d | 2026-03-15 A | 2026-03-26 A | JDH4-02-007-PR-1280 | 100% | 2026-07-18 | 2026-08-06 | Cost For Eng,Pro and T&C [21.9]; QA/QC Engineer [40 h] | 179,076.09 | MKH2-02-002-PR-1500 | 0.00287792953136441 | 0.287792953136441 | E1440 | CON-LEG101-PR-1380 | PRO | PR-TSE |
| JDH4-02-007-PR-1820 |  | Staging Time for Valves / Chambers | 7d | 2026-03-28 A | 2026-03-31 A | JDH4-02-007-PR-1290 | 100% | 2026-08-08 | 2026-08-15 | QA/QC Engineer [56 h] |  | MKH2-02-002-PR-4800 | 0 | 0 | E2270 | CON-LEG101-PR-1970 | PRO | PR-TSE |
|  | 2 | **Risers** |  | 2026-03-01 | 2026-05-04 |  |  |  |  |  |  |  |  |  |  |  |  |  |
| JDH4-02-007-PR-1900 |  | PO for Risers | 5d | 2026-03-01 A | 2026-03-04 A | JDH4-02-007-MA-1470 FS+32d | 100% | 2026-06-10 | 2026-06-15 | Purchaser [40 h] |  | MKH2-02-002-PR-1480 | 0 | 0 | E2740 | CON-LEG101-PR-2440 | PRO | PR-TSE |
| JDH4-02-007-PR-1907 |  | Material Fabrication for Risers - Stage 1 | 12d | 2026-03-05 A | 2026-03-14 A | JDH4-02-007-PR-1900 | 100% | 2026-06-16 | 2026-06-29 | Purchaser [300 h] |  |  |  |  |  |  | PRO | PR-TSE |
| JDH4-02-007-PR-1908 |  | Material Fabrication for Risers - Stage 2 | 12d | 2026-03-15 A | 2026-03-22 A | JDH4-02-007-PR-1907 | 100% | 2026-06-30 | 2026-07-13 | Purchaser [200 h] |  |  |  |  |  |  | PRO | PR-TSE |
| JDH4-02-007-PR-1909 |  | Material Fabrication for Risers - Stage 3 | 12d | 2026-03-23 A | 2026-03-25 A | JDH4-02-007-PR-1908 | 100% | 2026-07-14 | 2026-07-27 | Purchaser [200 h] |  |  |  |  |  |  | PRO | PR-TSE |
| JDH4-02-007-PR-1910 |  | Material Fabrication for Risers - Stage 4 | 12d | 2026-03-29 A | 2026-03-31 A | JDH4-02-007-PR-1909 | 100% | 2026-07-28 | 2026-08-10 | QA/QC Engineer [760 h] |  | MKH2-02-002-PR-1490 | 0 | 0 | E2750 | CON-LEG101-PR-2450 | PRO | PR-TSE |
| JDH4-02-007-PR-1920 |  | Material Delivery for Risers | 12d | 2026-04-01 A | 2026-04-30 A | JDH4-02-007-PR-1910 | 100% | 2026-08-11 | 2026-08-24 | Cost For Eng,Pro and T&C [21.9]; QA/QC Engineer [32 h] | 179,076.09 | MKH2-02-002-PR-1500 | 0.00287792953136441 | 0.287792953136441 | E2760 | CON-LEG101-PR-2460 | PRO | PR-TSE |
| JDH4-02-007-PR-1930 |  | Staging Time for Risers | 7d | 2026-05-02 A | 2026-05-04 A | JDH4-02-007-PR-1920 | 100% | 2026-06-24 | 2026-07-01 | QA/QC Engineer [56 h] |  | MKH2-02-002-PR-4800 | 0 | 0 | E2770 | CON-LEG101-PR-2470 | PRO | PR-TSE |

| ID | WBS | Activity | Duration | Start | Finish | Predecessors | Complete | Planned start | Planned finish | Resources | Cost | USERTEXT | Weight 1 | Total Weight % | Mapping Sheet Activity ID | Old Activity ID | Construction | Procurement |
| --- | --- | --- | --- | --- | --- | --- | --- | --- | --- | --- | --- | --- | --- | --- | --- | --- | --- | --- |
|  | 2 | **Potable Water Network** |  | 2026-02-02 | 2026-04-04 |  |  |  |  |  |  |  |  |  |  |  |  |  |
|  | 1 | **Valves / Chambers** |  | 2026-02-08 | 2026-03-31 |  |  |  |  |  |  |  |  |  |  |  |  |  |
| JDH4-02-007-PR-1240 |  | PO for Valves / Chambers | 5d | 2026-02-08 A | 2026-02-10 A | JDH4-02-007-MA-1430 FS+35d | 100% | 2026-04-08 | 2026-04-13 | Purchaser [40 h] |  | MKH2-02-002-PR-1420 | 0 | 0 | E1360 | CON-LEG101-PR-1330 | PRO | PR-PW |
| JDH4-02-007-PR-1248 |  | Material Fabrication for Valves / Chambers - Stage 1 | 10d | 2026-02-11 A | 2026-02-12 A | JDH4-02-007-PR-1240 | 100% | 2026-04-14 | 2026-04-25 | Purchaser [300 h] |  |  |  |  |  |  | PRO | PR-PW |
| JDH4-02-007-PR-1249 |  | Material Fabrication for Valves / Chambers - Stage 2 | 10d | 2026-02-11 A | 2026-02-14 A | JDH4-02-007-PR-1248 | 100% | 2026-04-26 | 2026-05-06 | Purchaser [300 h] |  |  |  |  |  |  | PRO | PR-PW |
| JDH4-02-007-PR-1250 |  | Material Fabrication for Valves / Chambers - Stage 3 | 10d | 2026-02-12 A | 2026-02-17 A | JDH4-02-007-PR-1249, JDH4-02-007-PR-1710, JDH4-02-007-PR-1710R | 100% | 2026-05-07 | 2026-05-18 | QA/QC Engineer [720 h] |  | MKH2-02-002-PR-1430 | 0 | 0 | E1370 | CON-LEG101-PR-1340 | PRO | PR-PW |
| JDH4-02-007-PR-1260 |  | Material Delivery for Valves / Chambers | 10d | 2026-02-23 A | 2026-03-21 A | JDH4-02-007-PR-1250 | 100% | 2026-05-19 | 2026-06-02 | Cost For Eng,Pro and T&C [21.9]; QA/QC Engineer [112 h] | 179,076.09 | MKH2-02-002-PR-1440 | 0.00282036965575064 | 0.282036965575064 | E1380 | CON-LEG101-PR-1350 | PRO | PR-PW |
| JDH4-02-007-PR-1810 |  | Staging Time for Valves / Chambers | 7d | 2026-03-25 A | 2026-03-31 A | JDH4-02-007-PR-1260 | 100% | 2026-06-03 | 2026-06-10 | QA/QC Engineer [56 h] |  | MKH2-02-002-PR-4780 | 0 | 0 | E2250 | CON-LEG101-PR-1960 | PRO | PR-PW |
|  | 2 | **Fire Hydrants** |  | 2026-02-02 | 2026-04-04 |  |  |  |  |  |  |  |  |  |  |  |  |  |
| JDH4-02-007-PR-2440 |  | PO for Fire Hydrant | 5d | 2026-02-02 A | 2026-02-10 A | JDH4-02-007-MA-1670 FS+35d | 100% | 2026-04-08 | 2026-04-13 | Purchaser [40 h] |  | MKH2-02-002-PR-1480 | 0 | 0 | E2740 | CON-LEG101-PR-3450 | PRO | PR-PW |
| JDH4-02-007-PR-2447 |  | Material Fabrication for Fire Hydrant - Stage 1 | 30d | 2026-02-11 A | 2026-02-14 A | JDH4-02-007-PR-2440 | 100% | 2026-04-14 | 2026-05-18 | Purchaser [300 h] |  |  |  |  |  |  | PRO | PR-PW |
| JDH4-02-007-PR-2448 |  | Material Fabrication for Fire Hydrant - Stage 2 | 20d | 2026-02-15 A | 2026-02-17 A | JDH4-02-007-PR-2447 | 100% | 2026-05-19 | 2026-06-14 | Purchaser [200 h] |  |  |  |  |  |  | PRO | PR-PW |
| JDH4-02-007-PR-2449 |  | Material Fabrication for Fire Hydrant - Stage 3 | 20d | 2026-02-18 A | 2026-02-21 A | JDH4-02-007-PR-2448 | 100% | 2026-06-15 | 2026-07-07 | Purchaser [200 h] |  |  |  |  |  |  | PRO | PR-PW |
| JDH4-02-007-PR-2450 |  | Material Fabrication for Fire Hydrant - Stage 4 | 25d | 2026-02-22 A | 2026-02-25 A | JDH4-02-007-PR-2449, JDH4-02-007-PR-1810 | 100% | 2026-07-08 | 2026-08-05 | QA/QC Engineer [760 h] |  | MKH2-02-002-PR-1490 | 0 | 0 | E2750 | CON-LEG101-PR-3460 | PRO | PR-PW |
| JDH4-02-007-PR-2460 |  | Material Delivery for Fire Hydrant | 25d | 2026-02-25 A | 2026-03-30 A | JDH4-02-007-PR-2450 | 100% | 2026-08-06 | 2026-09-03 | Cost For Eng,Pro and T&C [21.9]; QA/QC Engineer [32 h] | 179,076.09 | MKH2-02-002-PR-1500 | 0.00287792953136441 | 0.287792953136441 | E2760 | CON-LEG101-PR-3470 | PRO | PR-PW |
| JDH4-02-007-PR-2470 |  | Staging Time for Fire Hydrant | 7d | 2026-03-31 A | 2026-04-04 A | JDH4-02-007-PR-2460, JDH4-02-007-PR-1860, JDH4-02-007-PR-2370, JDH4-02-007-PR-1820 | 100% | 2026-09-08 | 2026-09-15 | QA/QC Engineer [56 h] |  | MKH2-02-002-PR-4800 | 0 | 0 | E2770 | CON-LEG101-PR-3480 | PRO | PR-PW |
|  | 1 | **Electrical Network** |  | 2026-02-17 | 2026-08-06 |  |  |  |  |  |  |  |  |  |  |  |  |  |
|  | 1 | **Medium Voltage Cable** |  | 2026-04-20 | 2026-06-15 |  |  |  |  |  |  |  |  |  |  |  |  |  |
| JDH4-02-007-PR-1000 |  | PO for Medium Voltage Cable | 7d | 2026-04-20 A | 2026-04-21 A | JDH4-02-007-MA-1310 | 100% | 2026-11-14 | 2026-11-21 | Purchaser [56 h] |  | MKH2-02-002-PR-1000 | 0 | 0 | E1000 | CON-LEG101-PR-1000 | PRO | PR-EE |
| JDH4-02-007-PR-1060 |  | Material Fabrication for Medium Voltage Cable - Stage 2 | 25d | 2026-04-22 A | 2026-04-26 A | JDH4-02-007-PR-1059 SS | 100% | 2026-11-22 | 2026-12-20 | QA/QC Engineer [480 h] |  | MKH2-02-002-PR-1100 | 0 | 0 | E1080 | CON-LEG101-PR-1080 | PRO | PR-EE |
| JDH4-02-007-PR-1059 |  | Material Fabrication for Medium Voltage Cable - Stage 1 | 25d | 2026-04-26 A | 2026-04-30 A | JDH4-02-007-PR-1000 | 100% | 2026-11-22 | 2026-12-20 | Purchaser [300 h] |  |  |  |  |  |  | PRO | PR-EE |
| JDH4-02-007-PR-1120 |  | Material Delivery for Medium Voltage Cable | 10d | 2026-04-28 A | 2026-06-13 A | JDH4-02-007-PR-1060 | 100% | 2026-11-14 | 2026-11-24 | Cost For Eng,Pro and T&C [43.8]; QA/QC Engineer [56 h] | 179,076.09 | MKH2-02-002-PR-1200 | 0.00245815908030055 | 0.245815908030055 | E1160 | CON-LEG101-PR-1160 | PRO | PR-EE |
| JDH4-02-007-PR-1750 |  | Staging Time for Medium Voltage Cable | 10d | 2026-06-14 A | 2026-06-15 A | JDH4-02-007-PR-1120 SS, JDH4-02-007-PR-2430 | 100% | 2026-10-01 | 2026-10-12 | QA/QC Engineer [56 h] |  | MKH2-02-002-PR-4680 | 0 | 0 | E2170 | CON-LEG101-PR-1880 | PRO | PR-EE |
|  | 4 | **Unit Sub Station** |  | 2026-06-07 | 2026-07-29 |  |  |  |  |  |  |  |  |  |  |  |  |  |
| JDH4-02-007-PR-1010 |  | PO for Unit Sub-station | 19d | 2026-06-07 A | 2026-06-08 A | JDH4-02-007-MA-1390 | 100% | 2026-07-02 | 2026-07-23 | Purchaser [152 h] |  | MKH2-02-002-PR-1030 | 0 | 0 | E1010 | CON-LEG101-PR-1010 | PRO | PR-EE |
| JDH4-02-007-PR-1067 |  | Material Fabrication for Unit Sub-station - Stage 1 | 5d | 2026-06-09 A | 2026-06-13 A | JDH4-02-007-PR-1010 | 100% | 2026-07-25 | 2026-07-29 | Purchaser [50 h] |  |  |  |  |  |  | PRO | PR-EE |
| JDH4-02-007-PR-1068 |  | Material Fabrication for Unit Sub-station - Stage 2 | 30d | 2026-06-14 A | 2026-06-15 A | JDH4-02-007-PR-1067 | 100% | 2026-07-30 | 2026-09-02 | Purchaser [300 h] |  |  |  |  |  |  | PRO | PR-EE |
| JDH4-02-007-PR-1069 |  | Material Fabrication for Unit Sub-station - Stage 3 | 30d | 2026-06-16 A | 2026-06-20 A | JDH4-02-007-PR-1068 | 100% | 2026-09-03 | 2026-10-08 | Purchaser [300 h] |  |  |  |  |  |  | PRO | PR-EE |
| JDH4-02-007-PR-1070 |  | Material Fabrication for Unit Sub-station - Stage 4 | 30d | 2026-06-21 A | 2026-06-23 A | JDH4-02-007-PR-1069 | 100% | 2026-10-10 | 2026-11-12 | QA/QC Engineer [760 h] |  | MKH2-02-002-PR-1130 | 0 | 0 | E1090 | CON-LEG101-PR-1090 | PRO | PR-EE |
| JDH4-02-007-PR-1130 |  | Material Delivery for Unit Sub-station | 25d | 2026-07-25 A | 2026-07-27 A | JDH4-02-007-PR-1070 | 100% | 2026-08-05 | 2026-09-02 | Cost For Eng,Pro and T&C [43.8]; QA/QC Engineer [120 h] | 179,076.09 | MKH2-02-002-PR-1230 | 0.00245815908030055 | 0.245815908030055 | E1170 | CON-LEG101-PR-1170 | PRO | PR-EE |
| JDH4-02-007-PR-1760 |  | Staging Time for Unit Sub-station | 7d | 2026-07-28 A | 2026-07-29 A | JDH4-02-007-PR-1130 | 100% | 2026-09-03 | 2026-09-10 | QA/QC Engineer [56 h] |  | MKH2-02-002-PR-4710 | 0 | 0 | E2180 | CON-LEG101-PR-1890 | PRO | PR-EE |

| ID | WBS | Activity | Duration | Start | Finish | Predecessors | Complete | Planned start | Planned finish | Resources | Cost | USERTEXT | Weight 1 | Total Weight % | Mapping Sheet Activity ID | Old Activity ID | Construction | Procurement |
| --- | --- | --- | --- | --- | --- | --- | --- | --- | --- | --- | --- | --- | --- | --- | --- | --- | --- | --- |
|  | 5 | **Low Voltage Cables** |  | 2026-02-22 | 2026-05-09 |  |  |  |  |  |  |  |  |  |  |  |  |  |
| JDH4-02-007-PR-1020 |  | PO for Low Voltage Cables | 7d | 2026-02-22 A | 2026-02-25 A | JDH4-02-007-MA-1330 | 100% | 2026-03-04 | 2026-03-11 | Purchaser [56 h] |  | MKH2-02-002-PR-1040 | 0 | 0 | E1020 | CON-LEG101-PR-1020 | PRO | PR-EE |
| JDH4-02-007-PR-1078 |  | Material Fabrication for Low Voltage Cables - Stage 1 | 11d | 2026-02-26 A | 2026-04-11 A | JDH4-02-007-PR-1020 | 100% | 2026-03-12 | 2026-03-28 | Purchaser [110 h] |  |  |  |  |  |  | PRO | PR-EE |
| JDH4-02-007-PR-1079 |  | Material Fabrication for Low Voltage Cables - Stage 2 | 25d | 2026-04-12 A | 2026-04-20 A | JDH4-02-007-PR-1078 | 100% | 2026-05-07 | 2026-06-09 | Purchaser [250 h] |  |  |  |  |  |  | PRO | PR-EE |
| JDH4-02-007-PR-1080 |  | Material Fabrication for Low Voltage Cables - Stage 3 | 25d | 2026-04-21 A | 2026-04-23 A | JDH4-02-007-PR-1079 | 100% | 2026-06-09 | 2026-07-08 | QA/QC Engineer [488 h] |  | MKH2-02-002-PR-1140 | 0 | 0 | E1100 | CON-LEG101-PR-1100 | PRO | PR-EE |
| JDH4-02-007-PR-1140 |  | Material Delivery for Low Voltage Cables | 28d | 2026-04-22 A | 2026-05-07 A | JDH4-02-007-PR-1080 | 100% | 2026-07-08 | 2026-08-10 | Cost For Eng,Pro and T&C [43.8]; QA/QC Engineer [64 h] | 179,076.09 | MKH2-02-002-PR-1240 | 0.00245815908030055 | 0.245815908030055 | E1180 | CON-LEG101-PR-1180 | PRO | PR-EE |
| JDH4-02-007-PR-1770 |  | Staging Time for Low Voltage Cables | 7d | 2026-05-09 A | 2026-05-09 A | JDH4-02-007-PR-1140 | 100% | 2026-06-18 | 2026-06-25 | QA/QC Engineer [56 h] |  | MKH2-02-002-PR-4720 | 0 | 0 | E2190 | CON-LEG101-PR-1900 | PRO | PR-EE |
|  | 2 | **Ring Main Unit** |  | 2026-04-23 | 2026-06-27 |  |  |  |  |  |  |  |  |  |  |  |  |  |
| JDH4-02-007-PR-1940 |  | PO for Ring Main Unit | 5d | 2026-04-23 A | 2026-04-23 A | JDH4-02-007-MA-1410, JDH4-02-007-PR-1020 | 100% | 2026-06-13 | 2026-06-17 | Purchaser [32 h] |  | MKH2-02-002-PR-1040 | 0 | 0 | E2780 | CON-LEG101-PR-2480 | PRO | PR-EE |
| JDH4-02-007-PR-1948 |  | Material Fabrication for Ring Main Unit - Stage 1 | 25d | 2026-04-24 A | 2026-05-02 A | JDH4-02-007-PR-1940 | 100% | 2026-06-18 | 2026-07-16 | Purchaser [250 h] |  |  |  |  |  |  | PRO | PR-EE |
| JDH4-02-007-PR-1949 |  | Material Fabrication for Ring Main Unit - Stage 2 | 25d | 2026-05-03 A | 2026-05-16 A | JDH4-02-007-PR-1948 | 100% | 2026-06-27 | 2026-07-26 | Purchaser [250 h] |  |  |  |  |  |  | PRO | PR-EE |
| JDH4-02-007-PR-1950 |  | Material Fabrication for Ring Main Unit - Stage 3 | 25d | 2026-05-16 A | 2026-05-31 A | JDH4-02-007-PR-1949 | 100% | 2026-07-02 | 2026-08-01 | QA/QC Engineer [600 h] |  | MKH2-02-002-PR-1140 | 0 | 0 | E2790 | CON-LEG101-PR-2490 | PRO | PR-EE |
| JDH4-02-007-PR-1960 |  | Material Delivery for Ring Main Unit | 28d | 2026-06-01 A | 2026-06-23 A | JDH4-02-007-PR-1950, JDH4-02-007-PR-2420 | 100% | 2026-08-10 | 2026-09-10 | Cost For Eng,Pro and T&C [43.8]; QA/QC Engineer [80 h] | 179,076.09 | MKH2-02-002-PR-1240 | 0.00245815908030055 | 0.245815908030055 | E2800 | CON-LEG101-PR-2500 | PRO | PR-EE |
| JDH4-02-007-PR-1970 |  | Staging Time for Ring Main Unit | 12d | 2026-06-24 A | 2026-06-27 A | JDH4-02-007-PR-1960, JDH4-02-007-PR-1770, JDH4-02-007-PR-1770 FF | 100% | 2026-08-10 | 2026-08-23 | QA/QC Engineer [56 h] |  | MKH2-02-002-PR-4720 | 0 | 0 | E2810 | CON-LEG101-PR-2510 | PRO | PR-EE |
|  | 6 | **Lighting poles** |  | 2026-02-17 | 2026-04-30 |  |  |  |  |  |  |  |  |  |  |  |  |  |
| JDH4-02-007-PR-1030 |  | PO for Lighting poles | 4d | 2026-02-17 A | 2026-02-19 A | JDH4-02-007-MA-1350, JDH4-02-007-PR-1940 | 100% | 2026-03-22 | 2026-03-25 | Purchaser [32 h] |  | MKH2-02-002-PR-1050 | 0 | 0 | E1030 | CON-LEG101-PR-1030 | PRO | PR-EE |
| JDH4-02-007-PR-1088 |  | Material Fabrication for Lighting poles - Stage 1 | 11d | 2026-02-21 A | 2026-03-11 A | JDH4-02-007-PR-1030 | 100% | 2026-03-26 | 2026-04-07 | Purchaser [110 h] |  |  |  |  |  |  | PRO | PR-EE |
| JDH4-02-007-PR-1090 |  | Material Fabrication for Lighting poles - Stage 3 | 25d | 2026-03-21 A | 2026-04-21 A | JDH4-02-007-PR-1089 | 100% | 2026-06-27 | 2026-07-26 | Purchaser [488 h] |  | MKH2-02-002-PR-1150 | 0 | 0 | E1110 | CON-LEG101-PR-1110 | PRO | PR-EE |
| JDH4-02-007-PR-1089 |  | Material Fabrication for Lighting poles - Stage 2 | 25d | 2026-03-21 A | 2026-04-16 A | JDH4-02-007-PR-1088 | 100% | 2026-04-23 | 2026-05-23 | Purchaser [250 h] |  |  |  |  |  |  | PRO | PR-EE |
| JDH4-02-007-PR-1150 |  | Material Delivery for Lighting poles | 28d | 2026-03-25 A | 2026-04-29 A | JDH4-02-007-PR-1090, JDH4-02-007-PR-1960 | 100% | 2026-08-17 | 2026-09-17 | Cost For Eng,Pro and T&C [43.8]; Purchaser [112 h] | 179,076.09 | MKH2-02-002-PR-1250 | 0.00245815908030055 | 0.245815908030055 | E1190 | CON-LEG101-PR-1190 | PRO | PR-EE |
| JDH4-02-007-PR-1780 |  | Staging Time for Lighting poles | 7d | 2026-03-28 A | 2026-04-30 A | JDH4-02-007-PR-1150, JDH4-02-007-PR-1770 | 100% | 2026-09-19 | 2026-09-27 | Purchaser [56 h] |  | MKH2-02-002-PR-4730 | 0 | 0 | E2200 | CON-LEG101-PR-1910 | PRO | PR-EE |
|  | 7 | **Street Lighting Luminaire** |  | 2026-02-17 | 2026-05-25 |  |  |  |  |  |  |  |  |  |  |  |  |  |
| JDH4-02-007-PR-1040 |  | PO for Street Lighting Luminaire | 7d | 2026-02-17 A | 2026-02-19 A | JDH4-02-007-MA-1370, JDH4-02-007-PR-1030 | 100% | 2026-03-26 | 2026-04-02 | Purchaser [56 h] |  | MKH2-02-002-PR-1060 | 0 | 0 | E1040 | CON-LEG101-PR-1040 | PRO | PR-EE |
| JDH4-02-007-PR-1098 |  | Material Fabrication for Street Lighting Luminaire - Stage 1 | 25d | 2026-02-21 A | 2026-03-14 A | JDH4-02-007-PR-1040 | 100% | 2026-04-04 | 2026-05-02 | Purchaser [250 h] |  |  |  |  |  |  | PRO | PR-EE |
| JDH4-02-007-PR-1099 |  | Material Fabrication for Street Lighting Luminaire - Stage 2 | 25d | 2026-03-18 A | 2026-04-09 A | JDH4-02-007-PR-1098 | 100% | 2026-05-05 | 2026-06-07 | Purchaser [250 h] |  |  |  |  |  |  | PRO | PR-EE |
| JDH4-02-007-PR-1100 |  | Material Fabrication for Street Lighting Luminaire - Stage 3 | 25d | 2026-03-19 A | 2026-05-21 A | JDH4-02-007-PR-1099 | 100% | 2026-06-27 | 2026-07-26 | QA/QC Engineer [600 h] |  | MKH2-02-002-PR-1160 | 0 | 0 | E1120 | CON-LEG101-PR-1120 | PRO | PR-EE |
| JDH4-02-007-PR-1160 |  | Material Delivery for Street Lighting Luminaire | 28d | 2026-03-25 A | 2026-05-25 A | JDH4-02-007-PR-1100 | 100% | 2026-07-06 | 2026-08-08 | Cost For Eng,Pro and T&C [43.8]; QA/QC Engineer [80 h] | 179,076.09 | MKH2-02-002-PR-1260 | 0.00245815908030055 | 0.245815908030055 | E1200 | CON-LEG101-PR-1200 | PRO | PR-EE |
| JDH4-02-007-PR-1790 |  | Staging Time for Street Lighting Luminaire | 12d | 2026-03-26 A | 2026-05-25 A | JDH4-02-007-PR-1160, JDH4-02-007-PR-1970, JDH4-02-007-PR-1780 | 100% | 2026-09-28 | 2026-10-11 | QA/QC Engineer [56 h] |  | MKH2-02-002-PR-4740 | 0 | 0 | E2210 | CON-LEG101-PR-1920 | PRO | PR-EE |

| ID | WBS | Activity | Duration | Start | Finish | Predecessors | Complete | Planned start | Planned finish | Resources | Cost | USERTEXT | Weight 1 | Total Weight % | Mapping Sheet Activity ID | Old Activity ID | Construction | Procurement |
| --- | --- | --- | --- | --- | --- | --- | --- | --- | --- | --- | --- | --- | --- | --- | --- | --- | --- | --- |
|  | 9 | **Lighting panels/Feeder Pillers** |  | 2026-04-30 | 2026-06-09 |  |  |  |  |  |  |  |  |  |  |  |  |  |
| JDH4-02-007-PR-1050 |  | PO for Lighting Panels/Feeder Pillers | 4d | 2026-04-30 A | 2026-05-14 A | JDH4-02-007-MA-1520 | 100% | 2026-06-25 | 2026-06-29 | Purchaser [32 h] |  | MKH2-02-002-PR-1080 | 0 | 0 | E1060 | CON-LEG101-PR-1060 | PRO | PR-EE |
| JDH4-02-007-PR-1108 |  | Material Fabrication for Lighting Panels/Feeder Pillers - Stage 1 | 25d | 2026-05-16 A | 2026-06-07 A | JDH4-02-007-PR-1050 | 100% | 2026-06-30 | 2026-07-28 | Purchaser [250 h] |  |  |  |  |  |  | PRO | PR-EE |
| JDH4-02-007-PR-1109 |  | Material Fabrication for Lighting Panels/Feeder Pillers - Stage 2 | 25d | 2026-06-08 A | 2026-06-09 A | JDH4-02-007-PR-1108 | 100% | 2026-07-29 | 2026-08-26 | Purchaser [250 h] |  |  |  |  |  |  | PRO | PR-EE |
| JDH4-02-007-PR-1110 |  | Material Fabrication for Lighting Panels/Feeder Pillers - Stage 3 | 25d | 2026-06-08 A | 2026-06-09 A | JDH4-02-007-PR-1109 | 100% | 2026-08-26 | 2026-09-24 | QA/QC Engineer [600 h] |  | MKH2-02-002-PR-1180 | 0 | 0 | E1140 | CON-LEG101-PR-1140 | PRO | PR-EE |
| JDH4-02-007-PR-1170 |  | Material Delivery for Lighting Panels/Feeder Pillers | 28d | 2026-06-08 A | 2026-06-09 A | JDH4-02-007-PR-1110 | 100% | 2026-09-26 | 2026-10-27 | Cost For Eng,Pro and T&C [43.8]; QA/QC Engineer [64 h] | 179,076.09 | MKH2-02-002-PR-1280 | 0.00245815908030055 | 0.245815908030055 | E1220 | CON-LEG101-PR-1220 | PRO | PR-EE |
| JDH4-02-007-PR-1800 |  | Staging Time for Lighting Panels/Feeder Pillers | 7d | 2026-06-09 A | 2026-06-09 A | JDH4-02-007-PR-1170, JDH4-02-007-PR-1780, JDH4-02-007-PR-1160 | 100% | 2026-10-28 | 2026-11-04 | QA/QC Engineer [56 h] |  | MKH2-02-002-PR-4760 | 0 | 0 | E2230 | CON-LEG101-PR-1940 | PRO | PR-EE |
|  | 11 | **Low Voltage Distribution Panels** |  | 2026-04-30 | 2026-08-06 |  |  |  |  |  |  |  |  |  |  |  |  |  |
| JDH4-02-007-PR-2480 |  | PO for Low Voltage Distribution Panels | 7d | 2026-04-30 A | 2026-05-14 A | JDH4-02-007-MA-1150, JDH4-02-007-PR-1050 | 100% | 2026-06-30 | 2026-07-07 | Purchaser [56 h] |  | MKH2-02-002-PR-1090 | 0 | 0 | E1070 | CON-LEG101-PR-3490 | PRO | PR-EE |
| JDH4-02-007-PR-2488 |  | Material Fabrication for Low Voltage Distribution Panels - Stage 1 | 21d | 2026-05-16 A | 2026-05-23 A | JDH4-02-007-PR-2480 | 100% | 2026-07-08 | 2026-08-01 | Purchaser [210 h] |  |  |  |  |  |  | PRO | PR-EE |
| JDH4-02-007-PR-2489 |  | Material Fabrication for Low Voltage Distribution Panels - Stage 2 | 20d | 2026-05-24 A | 2026-06-01 A | JDH4-02-007-PR-2488 | 100% | 2026-08-02 | 2026-08-24 | Purchaser [200 h] |  |  |  |  |  |  | PRO | PR-EE |
| JDH4-02-007-PR-2490 |  | Material Fabrication for Low Voltage Distribution Panels - Stage 3 | 20d | 2026-06-02 A | 2026-07-30 A | JDH4-02-007-PR-2489 | 100% | 2026-08-25 | 2026-09-16 | QA/QC Engineer [488 h] |  | MKH2-02-002-PR-1190 | 0 | 0 | E1150 | CON-LEG101-PR-3500 | PRO | PR-EE |
| JDH4-02-007-PR-2500 |  | Material Delivery for Low Voltage Distribution Panels | 28d | 2026-08-01 A | 2026-08-05 A | JDH4-02-007-PR-2490 | 100% | 2026-09-19 | 2026-10-21 | Cost For Eng,Pro and T&C [43.8]; QA/QC Engineer [80 h] | 179,076.09 | MKH2-02-002-PR-1290 | 0.00245815908030055 | 0.245815908030055 | E1230 | CON-LEG101-PR-3510 | PRO | PR-EE |
| JDH4-02-007-PR-2510 |  | Staging Time for Low Voltage Distribution Panels | 7d | 2026-08-06 A | 2026-08-06 A | JDH4-02-007-PR-2500, JDH4-02-007-PR-1800 | 100% | 2026-11-05 | 2026-11-12 | QA/QC Engineer [56 h] |  | MKH2-02-002-PR-4770 | 0 | 0 | E2240 | CON-LEG101-PR-3520 | PRO | PR-EE |
|  | 6 | **Sewage Lift Station** |  | 2026-01-25 | 2026-10-06 |  |  |  |  |  |  |  |  |  |  |  |  |  |
|  | 5 | **Odours scrubbing system** |  | 2026-02-08 | 2026-08-10 |  |  |  |  |  |  |  |  |  |  |  |  |  |
| JDH4-02-007-PR-1990 |  | PO for Odours scrubbing system | 4d | 2026-02-08 A | 2026-02-10 A | JDH4-02-007-MA-1710 FS+35d | 100% | 2026-04-08 | 2026-04-12 | Purchaser [32 h] |  | MKH2-02-002-PR-1040 | 0 | 0 | E3320 | CON-LEG101-PR-2850 | PRO | PR-SL |
| JDH4-02-007-PR-2037 |  | Material Fabrication for Odours scrubbing system - Stage 1 | 25d | 2026-02-11 A | 2026-02-14 A | JDH4-02-007-PR-1990 | 100% | 2026-04-13 | 2026-05-11 | Purchaser [250 h] |  |  |  |  |  |  | PRO | PR-SL |
| JDH4-02-007-PR-2038 |  | Material Fabrication for Odours scrubbing system - Stage 2 | 25d | 2026-02-15 A | 2026-02-18 A | JDH4-02-007-PR-2037 | 100% | 2026-05-12 | 2026-06-13 | Purchaser [250 h] |  |  |  |  |  |  | PRO | PR-SL |
| JDH4-02-007-PR-2039 |  | Material Fabrication for Odours scrubbing system - Stage 3 | 25d | 2026-04-25 A | 2026-06-10 A | JDH4-02-007-PR-2038 | 100% | 2026-05-30 | 2026-06-27 | Purchaser [250 h] |  |  |  |  |  |  | PRO | PR-SL |
| JDH4-02-007-PR-2040 |  | Material Fabrication for Odours scrubbing system - Stage 4 | 25d | 2026-06-11 A | 2026-06-21 A | JDH4-02-007-PR-2039, JDH4-02-007-PR-1770 | 100% | 2026-07-09 | 2026-08-06 | QA/QC Engineer [800 h] |  | MKH2-02-002-PR-1140 | 0 | 0 | E3400 | CON-LEG101-PR-2910 | PRO | PR-SL |
| JDH4-02-007-PR-2090 |  | Material Delivery for Odours scrubbing system | 28d | 2026-06-22 A | 2026-06-25 A | JDH4-02-007-PR-2040 | 100% | 2026-08-08 | 2026-09-08 | Cost For Eng,Pro and T&C [43.8]; QA/QC Engineer [64 h] | 179,076.09 | MKH2-02-002-PR-1240 | 0.00245815908030055 | 0.245815908030055 | E3480 | CON-LEG101-PR-2970 | PRO | PR-SL |
| JDH4-02-007-PR-2140 |  | Staging Time for Odours scrubbing system | 7d | 2026-08-10 A | 2026-08-10 A | JDH4-02-007-PR-2090, JDH4-02-007-PR-2470 | 100% | 2026-08-26 | 2026-09-02 | QA/QC Engineer [56 h] |  | MKH2-02-002-PR-4720 | 0 | 0 | E3560 | CON-LEG101-PR-3030 | PRO | PR-SL |
|  | 2 | **Crane** |  | 2026-02-16 | 2026-08-13 |  |  |  |  |  |  |  |  |  |  |  |  |  |
| JDH4-02-007-PR-2180 |  | PO for Crane | 7d | 2026-02-16 A | 2026-02-16 A | JDH4-02-007-MA-1730, JDH4-02-007-PR-1990 | 100% | 2026-03-16 | 2026-03-26 | Purchaser [56 h] |  | MKH2-02-002-PR-1040 | 0 | 0 | E3620 | CON-LEG101-PR-3080 | PRO | PR-SL |
| JDH4-02-007-PR-2187 |  | Material Fabrication for Crane - Stage 1 | 19d | 2026-02-17 A | 2026-03-25 A | JDH4-02-007-PR-2180 | 100% | 2026-03-28 | 2026-04-18 | Purchaser [190 h] |  |  |  |  |  |  | PRO | PR-SL |
| JDH4-02-007-PR-2188 |  | Material Fabrication for Crane - Stage 2 | 20d | 2026-03-25 A | 2026-05-20 A | JDH4-02-007-PR-2187 | 100% | 2026-04-19 | 2026-05-12 | Purchaser [200 h] |  |  |  |  |  |  | PRO | PR-SL |
| JDH4-02-007-PR-2189 |  | Material Fabrication for Crane - Stage 3 | 30d | 2026-05-21 A | 2026-08-03 A | JDH4-02-007-PR-2188 | 100% | 2026-06-14 | 2026-07-18 | Purchaser [300 h] |  |  |  |  |  |  | PRO | PR-SL |
| JDH4-02-007-PR-2190 |  | Material Fabrication for Crane - Stage 4 | 30d | 2026-08-01 A | 2026-08-06 A | JDH4-02-007-PR-2189 | 100% | 2026-09-03 | 2026-10-10 | QA/QC Engineer [792 h] |  | MKH2-02-002-PR-1140 | 0 | 0 | E3630 | CON-LEG101-PR-3090 | PRO | PR-SL |
| JDH4-02-007-PR-2200 |  | Material Delivery for Crane | 28d | 2026-08-08 A | 2026-08-12 A | JDH4-02-007-PR-2190, JDH4-02-007-PR-1780 | 100% | 2026-10-10 | 2026-11-11 | Cost For Eng,Pro and T&C [43.8]; QA/QC Engineer [72 h] | 179,076.09 | MKH2-02-002-PR-1240 | 0.00245815908030055 | 0.245815908030055 | E3640 | CON-LEG101-PR-3100 | PRO | PR-SL |
| JDH4-02-007-PR-2210 |  | Staging Time for Crane | 7d | 2026-08-13 A | 2026-08-13 A | JDH4-02-007-PR-2200, JDH4-02-007-PR-2140 SS | 100% | 2026-11-11 | 2026-11-19 | QA/QC Engineer [56 h] |  | MKH2-02-002-PR-4720 | 0 | 0 | E3650 | CON-LEG101-PR-3110 | PRO | PR-SL |

| ID | WBS | Activity | Duration | Start | Finish | Predecessors | Complete | Planned start | Planned finish | Resources | Cost | USERTEXT | Weight 1 | Total Weight % | Mapping Sheet Activity ID | Old Activity ID | Construction | Procurement |
| --- | --- | --- | --- | --- | --- | --- | --- | --- | --- | --- | --- | --- | --- | --- | --- | --- | --- | --- |
|  | 6 | **Air Vents** |  | 2026-02-25 | 2026-05-23 |  |  |  |  |  |  |  |  |  |  |  |  |  |
| JDH4-02-007-PR-2000 |  | PO for Air Vents | 7d | 2026-02-25 A | 2026-02-25 A | JDH4-02-007-MA-1820, JDH4-02-007-PR-2180 | 100% | 2026-03-28 | 2026-04-04 | Purchaser [56 h] |  | MKH2-02-002-PR-1050 | 0 | 0 | E3330 | CON-LEG101-PR-2860 | PRO | PR-SL |
| JDH4-02-007-PR-2045 |  | Material Fabrication for Air Vents - Stage 1 | 14d | 2026-02-26 A | 2026-03-25 A | JDH4-02-007-PR-2000 | 100% | 2026-04-05 | 2026-04-20 | Purchaser [140 h] |  |  |  |  |  |  | PRO | PR-SL |
| JDH4-02-007-PR-2046 |  | Material Fabrication for Air Vents - Stage 2 | 20d | 2026-03-25 A | 2026-03-31 A | JDH4-02-007-PR-2045 | 100% | 2026-04-15 | 2026-05-09 | Purchaser [200 h] |  |  |  |  |  |  | PRO | PR-SL |
| JDH4-02-007-PR-2047 |  | Material Fabrication for Air Vents - Stage 3 | 30d | 2026-04-01 A | 2026-04-09 A | JDH4-02-007-PR-2046 | 100% | 2026-06-09 | 2026-07-13 | Purchaser [300 h] |  |  |  |  |  |  | PRO | PR-SL |
| JDH4-02-007-PR-2048 |  | Material Fabrication for Air Vents - Stage 4 | 30d | 2026-04-08 A | 2026-04-16 A | JDH4-02-007-PR-2047, JDH4-02-007-MS-1060 | 100% | 2026-08-23 | 2026-09-27 | Purchaser [300 h] |  |  |  |  |  |  | PRO | PR-SL |
| JDH4-02-007-PR-2049 |  | Material Fabrication for Air Vents - Stage 5 | 30d | 2026-04-18 A | 2026-04-23 A | JDH4-02-007-PR-2048 | 100% | 2026-10-04 | 2026-11-07 | Purchaser [300 h] |  |  |  |  |  |  | PRO | PR-SL |
| JDH4-02-007-PR-2050 |  | Material Fabrication for Air Vents - Stage 6 | 30d | 2026-04-25 A | 2026-05-13 A | JDH4-02-007-PR-2049 | 100% | 2026-11-08 | 2026-12-12 | QA/QC Engineer [1232 h] |  | MKH2-02-002-PR-1150 | 0 | 0 | E3410 | CON-LEG101-PR-2920 | PRO | PR-SL |
| JDH4-02-007-PR-2100 |  | Material Delivery for Air Vents | 28d | 2026-05-14 A | 2026-05-18 A | JDH4-02-007-PR-2050, JDH4-02-007-PR-2210 | 100% | 2026-12-13 | 2027-01-13 | Cost For Eng,Pro and T&C [43.8]; QA/QC Engineer [128 h] | 179,076.09 | MKH2-02-002-PR-1250 | 0.00245815908030055 | 0.245815908030055 | E3490 | CON-LEG101-PR-2980 | PRO | PR-SL |
| JDH4-02-007-PR-2150 |  | Staging Time for Air Vents | 7d | 2026-05-19 A | 2026-05-23 A | JDH4-02-007-PR-2100, JDH4-02-007-PR-2210 | 100% | 2027-01-14 | 2027-01-21 | QA/QC Engineer [56 h] |  | MKH2-02-002-PR-4730 | 0 | 0 | E3570 | CON-LEG101-PR-3040 | PRO | PR-SL |
|  | 3 | **Screening Container** |  | 2026-03-02 | 2026-05-02 |  |  |  |  |  |  |  |  |  |  |  |  |  |
| JDH4-02-007-PR-2220 |  | PO for Screening Container | 7d | 2026-03-02 A | 2026-03-09 A | JDH4-02-007-MA-1760 | 100% | 2026-03-22 | 2026-03-29 | Purchaser [56 h] |  | MKH2-02-002-PR-1050 | 0 | 0 | E3660 | CON-LEG101-PR-3120 | PRO | PR-SL |
| JDH4-02-007-PR-2225 |  | Material Fabrication for Screening Container - Stage 1 | 14d | 2026-03-10 A | 2026-03-25 A | JDH4-02-007-PR-2220 | 100% | 2026-03-30 | 2026-04-14 | Purchaser [140 h] |  |  |  |  |  |  | PRO | PR-SL |
| JDH4-02-007-PR-2226 |  | Material Fabrication for Screening Container - Stage 2 | 20d | 2026-03-25 A | 2026-04-14 A | JDH4-02-007-PR-2225 | 100% | 2026-04-12 | 2026-05-05 | Purchaser [200 h] |  |  |  |  |  |  | PRO | PR-SL |
| JDH4-02-007-PR-2227 |  | Material Fabrication for Screening Container - Stage 3 | 30d | 2026-04-08 A | 2026-04-15 A | JDH4-02-007-PR-2226 | 100% | 2026-05-16 | 2026-06-22 | Purchaser [300 h] |  |  |  |  |  |  | PRO | PR-SL |
| JDH4-02-007-PR-2230 |  | Material Fabrication for Screening Container - Stage 6 | 30d | 2026-04-15 A | 2026-04-19 A | JDH4-02-007-PR-2229 | 100% | 2026-09-01 | 2026-10-06 | QA/QC Engineer [1232 h] |  | MKH2-02-002-PR-1150 | 0 | 0 | E3670 | CON-LEG101-PR-3130 | PRO | PR-SL |
| JDH4-02-007-PR-2228 |  | Material Fabrication for Screening Container - Stage 4 | 30d | 2026-04-16 A | 2026-04-18 A | JDH4-02-007-PR-2227 | 100% | 2026-06-23 | 2026-07-27 | Purchaser [300 h] |  |  |  |  |  |  | PRO | PR-SL |
| JDH4-02-007-PR-2229 |  | Material Fabrication for Screening Container - Stage 5 | 30d | 2026-04-16 A | 2026-04-18 A | JDH4-02-007-PR-2228 | 100% | 2026-07-28 | 2026-08-31 | Purchaser [300 h] |  |  |  |  |  |  | PRO | PR-SL |
| JDH4-02-007-PR-2240 |  | Material Delivery for Screening Container | 28d | 2026-04-19 A | 2026-04-23 A | JDH4-02-007-PR-2230 | 100% | 2026-10-07 | 2026-11-08 | Cost For Eng,Pro and T&C [43.8]; QA/QC Engineer [128 h] | 179,076.09 | MKH2-02-002-PR-1250 | 0.00245815908030055 | 0.245815908030055 | E3680 | CON-LEG101-PR-3140 | PRO | PR-SL |
| JDH4-02-007-PR-2250 |  | Staging Time for Screening Container | 10d | 2026-04-25 A | 2026-05-02 A | JDH4-02-007-PR-2240 | 100% | 2026-06-25 | 2026-07-06 | QA/QC Engineer [56 h] |  | MKH2-02-002-PR-4730 | 0 | 0 | E3690 | CON-LEG101-PR-3150 | PRO | PR-SL |
|  | 7 | **Baffle Plates** |  | 2026-02-02 | 2026-02-24 |  |  |  |  |  |  |  |  |  |  |  |  |  |
| JDH4-02-007-PR-2010 |  | PO for Baffle Plates | 7d | 2026-02-02 A | 2026-02-02 A | JDH4-02-007-MA-1830, JDH4-02-007-PR-2000 | 100% | 2026-04-05 | 2026-04-12 | Purchaser [56 h] |  | MKH2-02-002-PR-1060 | 0 | 0 | E3340 | CON-LEG101-PR-2870 | PRO | PR-SL |
| JDH4-02-007-PR-2057 |  | Material Fabrication for Baffle Plates - Stage 1 | 30d | 2026-02-03 A | 2026-02-05 A | JDH4-02-007-PR-2010 | 100% | 2026-04-13 | 2026-05-17 | Purchaser [300 h] |  |  |  |  |  |  | PRO | PR-SL |
| JDH4-02-007-PR-2058 |  | Material Fabrication for Baffle Plates - Stage 2 | 30d | 2026-02-07 A | 2026-02-08 A | JDH4-02-007-PR-2057, JDH4-02-007-PR-1930 | 100% | 2026-06-03 | 2026-07-07 | Purchaser [300 h] |  |  |  |  |  |  | PRO | PR-SL |
| JDH4-02-007-PR-2059 |  | Material Fabrication for Baffle Plates - Stage 3 | 30d | 2026-02-08 A | 2026-02-09 A | JDH4-02-007-PR-2058 | 100% | 2026-07-08 | 2026-08-11 | Purchaser [300 h] |  |  |  |  |  |  | PRO | PR-SL |
| JDH4-02-007-PR-2060 |  | Material Fabrication for Baffle Plates - Stage 4 | 30d | 2026-02-10 A | 2026-02-10 A | JDH4-02-007-PR-2059, JDH4-02-007-PR-2190, JDH4-02-007-PR-2500 | 100% | 2026-08-12 | 2026-09-15 | QA/QC Engineer [960 h] |  | MKH2-02-002-PR-1160 | 0 | 0 | E3420 | CON-LEG101-PR-2930 | PRO | PR-SL |
| JDH4-02-007-PR-2110 |  | Material Delivery for Baffle Plates | 15d | 2026-02-11 A | 2026-02-11 A | JDH4-02-007-PR-2060, JDH4-02-007-PR-1800, JDH4-02-007-PR-1790 | 100% | 2026-09-16 | 2026-10-04 | Cost For Eng,Pro and T&C [43.8]; QA/QC Engineer [80 h] | 179,076.09 | MKH2-02-002-PR-1260 | 0.00245815908030055 | 0.245815908030055 | E3500 | CON-LEG101-PR-2990 | PRO | PR-SL |
| JDH4-02-007-PR-2160 |  | Staging Time for Baffle Plates | 7d | 2026-02-16 A | 2026-02-24 A | JDH4-02-007-PR-2110, JDH4-02-007-PR-2140, JDH4-02-007-PR-1760 SS | 100% | 2026-10-05 | 2026-10-12 | QA/QC Engineer [56 h] |  | MKH2-02-002-PR-4740 | 0 | 0 | E3580 | CON-LEG101-PR-3050 | PRO | PR-SL |

| ID | WBS | Activity | Duration | Start | Finish | Predecessors | Complete | Planned start | Planned finish | Resources | Cost | USERTEXT | Weight 1 | Total Weight % | Mapping Sheet Activity ID | Old Activity ID | Construction | Procurement |
| --- | --- | --- | --- | --- | --- | --- | --- | --- | --- | --- | --- | --- | --- | --- | --- | --- | --- | --- |
|  | 8 | **Anti-Water Hammer Equipment** |  | 2026-02-02 | 2026-02-09 |  |  |  |  |  |  |  |  |  |  |  |  |  |
| JDH4-02-007-PR-2020 |  | PO for Anti-Water Hammer Equipment | 8d | 2026-02-02 A | 2026-02-02 A | JDH4-02-007-MA-1850 | 100% | 2026-03-30 | 2026-04-07 | Purchaser [64 h] |  | MKH2-02-002-PR-1070 | 0 | 0 | E3350 | CON-LEG101-PR-2880 | PRO | PR-SL |
| JDH4-02-007-PR-2065 |  | Material Fabrication for Anti-Water Hammer Equipment - Stage 1 | 14d | 2026-02-03 A | 2026-02-03 A | JDH4-02-007-PR-2020 | 100% | 2026-04-08 | 2026-04-23 | Purchaser [140 h] |  |  |  |  |  |  | PRO | PR-SL |
| JDH4-02-007-PR-2066 |  | Material Fabrication for Anti-Water Hammer Equipment - Stage 2 | 20d | 2026-02-03 A | 2026-02-03 A | JDH4-02-007-PR-2065 | 100% | 2026-04-25 | 2026-05-17 | Purchaser [200 h] |  |  |  |  |  |  | PRO | PR-SL |
| JDH4-02-007-PR-2067 |  | Material Fabrication for Anti-Water Hammer Equipment - Stage 3 | 30d | 2026-02-03 A | 2026-02-04 A | JDH4-02-007-PR-2066 | 100% | 2026-05-18 | 2026-06-24 | Purchaser [300 h] |  |  |  |  |  |  | PRO | PR-SL |
| JDH4-02-007-PR-2120 |  | Material Delivery for Anti-Water Hammer Equipment | 15d | 2026-02-03 A | 2026-02-08 A | JDH4-02-007-PR-2070, JDH4-02-007-PR-2210 | 100% | 2026-11-04 | 2026-11-21 | Cost For Eng,Pro and T&C [43.8]; QA/QC Engineer [112 h] | 179,076.09 | MKH2-02-002-PR-1270 | 0.00245815908030055 | 0.245815908030055 | E3510 | CON-LEG101-PR-3000 | PRO | PR-SL |
| JDH4-02-007-PR-2068 |  | Material Fabrication for Anti-Water Hammer Equipment - Stage 4 | 30d | 2026-02-04 A | 2026-02-04 A | JDH4-02-007-PR-2067 | 100% | 2026-06-25 | 2026-07-29 | Purchaser [300 h] |  |  |  |  |  |  | PRO | PR-SL |
| JDH4-02-007-PR-2069 |  | Material Fabrication for Anti-Water Hammer Equipment - Stage 5 | 30d | 2026-02-04 A | 2026-02-05 A | JDH4-02-007-PR-2068 | 100% | 2026-07-30 | 2026-09-02 | Purchaser [300 h] |  |  |  |  |  |  | PRO | PR-SL |
| JDH4-02-007-PR-2070 |  | Material Fabrication for Anti-Water Hammer Equipment - Stage 6 | 30d | 2026-02-04 A | 2026-02-05 A | JDH4-02-007-PR-2069, JDH4-02-007-PR-2160 | 100% | 2026-09-30 | 2026-11-03 | QA/QC Engineer [1232 h] |  | MKH2-02-002-PR-1170 | 0 | 0 | E3430 | CON-LEG101-PR-2940 | PRO | PR-SL |
| JDH4-02-007-PR-2170 |  | Staging Time for Anti-Water Hammer Equipment | 7d | 2026-02-08 A | 2026-02-09 A | JDH4-02-007-PR-2120 | 100% | 2026-11-22 | 2026-11-29 | QA/QC Engineer [56 h] |  | MKH2-02-002-PR-4750 | 0 | 0 | E3590 | CON-LEG101-PR-3060 | PRO | PR-SL |
|  | 4 | **Pumps** |  | 2026-01-28 | 2026-10-05 |  |  |  |  |  |  |  |  |  |  |  |  |  |
| JDH4-02-007-PR-1980 |  | PO for Pumps | 2d | 2026-01-28 A | 2026-01-29 A | JDH4-02-007-MA-1570 | 100% |  |  | Purchaser [128 h] |  | MKH2-02-002-PR-1030 | 0 | 0 | E3310 | CON-LEG101-PR-2840 | PRO | PR-SL |
| JDH4-02-007-PR-2026 |  | Material Fabrication for Pumps - Stage 1 | 30d | 2026-02-01 A | 2026-02-14 A | JDH4-02-007-PR-1980 | 100% | 2026-05-13 | 2026-06-20 | Purchaser [300 h] |  |  |  |  |  |  | PRO | PR-SL |
| JDH4-02-007-PR-2027 |  | Material Fabrication for Pumps - Stage 2 | 30d | 2026-02-16 A | 2026-02-28 A | JDH4-02-007-PR-2026 | 100% | 2026-06-21 | 2026-07-25 | Purchaser [300 h] |  |  |  |  |  |  | PRO | PR-SL |
| JDH4-02-007-PR-2028 |  | Material Fabrication for Pumps - Stage 3 | 30d | 2026-03-01 A | 2026-05-20 A | JDH4-02-007-PR-2027 | 100% | 2026-07-26 | 2026-08-29 | Purchaser [300 h] |  |  |  |  |  |  | PRO | PR-SL |
| JDH4-02-007-PR-2029 |  | Material Fabrication for Pumps - Stage 4 | 30d | 2026-05-21 A | 2026-09-28 A | JDH4-02-007-PR-2028 | 100% | 2026-06-02 | 2026-07-06 | Purchaser [300 h] |  |  |  |  |  |  | PRO | PR-SL |
| JDH4-02-007-PR-2030 |  | Material Fabrication for Pumps - Stage 5 | 30d | 2026-08-03 A | 2026-09-27 A | JDH4-02-007-PR-2029 | 100% | 2026-08-26 | 2026-09-30 | QA/QC Engineer [1200 h] |  | MKH2-02-002-PR-1130 | 0 | 0 | E3390 | CON-LEG101-PR-2900 | PRO | PR-SL |
| JDH4-02-007-PR-2080 |  | Material Delivery for Pumps | 28d | 2026-09-27 A | 2026-09-30 A | JDH4-02-007-PR-2030 | 100% | 2026-10-18 | 2026-11-18 | Cost For Eng,Pro and T&C [43.8]; QA/QC Engineer [200 h] | 179,076.09 | MKH2-02-002-PR-1230 | 0.00245815908030055 | 0.245815908030055 | E3470 | CON-LEG101-PR-2960 | PRO | PR-SL |
| JDH4-02-007-PR-2130 |  | Staging Time for Pumps | 7d | 2026-10-01 A | 2026-10-05 A | JDH4-02-007-PR-2080, JDH4-02-007-PR-2069, JDH4-02-007-PR-2510 | 100% | 2026-11-19 | 2026-11-26 | QA/QC Engineer [56 h] |  | MKH2-02-002-PR-4710 | 0 | 0 | E3550 | CON-LEG101-PR-3020 | PRO | PR-SL |
|  | 9 | **Main Distribution Board /MCC panels** |  | 2026-06-07 | 2026-08-27 |  |  |  |  |  |  |  |  |  |  |  |  |  |
| JDH4-02-007-PR-2530 |  | PO for Main Distribution Board / MCC panels | 4d | 2026-06-07 A | 2026-06-08 A | JDH4-02-007-SB-1870, JDH4-02-007-MA-1870 | 100% | 2026-06-25 | 2026-06-29 | Purchaser [32 h] |  | MKH2-02-002-PR-1040 | 0 | 0 | E3320 | CON-LEG101-PR-3540 | PRO | PR-SL |
| JDH4-02-007-PR-2567 |  | Material Fabrication for Main Distribution Board / MCC panels - Stage 1 | 25d | 2026-06-09 A | 2026-06-11 A | JDH4-02-007-PR-2530 | 100% | 2026-06-30 | 2026-07-28 | Purchaser [250 h] |  |  |  |  |  |  | PRO | PR-SL |
| JDH4-02-007-PR-2568 |  | Material Fabrication for Main Distribution Board / MCC panels - Stage 2 | 25d | 2026-06-13 A | 2026-06-15 A | JDH4-02-007-PR-2567 | 100% | 2026-07-29 | 2026-08-26 | Purchaser [250 h] |  |  |  |  |  |  | PRO | PR-SL |
| JDH4-02-007-PR-2569 |  | Material Fabrication for Main Distribution Board / MCC panels - Stage 3 | 25d | 2026-08-01 A | 2026-08-11 A | JDH4-02-007-PR-2568 | 100% | 2026-08-05 | 2026-09-02 | Purchaser [250 h] |  |  |  |  |  |  | PRO | PR-SL |
| JDH4-02-007-PR-2570 |  | Material Fabrication for Main Distribution Board / MCC panels - Stage 4 | 25d | 2026-08-01 A | 2026-08-06 A | JDH4-02-007-PR-2569 | 100% | 2026-09-03 | 2026-10-03 | QA/QC Engineer [800 h] |  | MKH2-02-002-PR-1140 | 0 | 0 | E3400 | CON-LEG101-PR-3580 | PRO | PR-SL |
| JDH4-02-007-PR-2610 |  | Material Delivery for Main Distribution Board / MCC panels | 28d | 2026-08-12 A | 2026-08-19 A | JDH4-02-007-PR-2570 | 100% | 2026-09-24 | 2026-10-27 | Cost For Eng,Pro and T&C [43.8]; QA/QC Engineer [64 h] | 179,076.09 | MKH2-02-002-PR-1240 | 0.00245815908030055 | 0.245815908030055 | E3480 | CON-LEG101-PR-3620 | PRO | PR-SL |
| JDH4-02-007-PR-2650 |  | Staging Time for Main Distribution Board / MCC panels | 7d | 2026-08-20 A | 2026-08-27 A | JDH4-02-007-PR-2610 | 100% | 2026-10-27 | 2026-11-04 | QA/QC Engineer [56 h] |  | MKH2-02-002-PR-4720 | 0 | 0 | E3560 | CON-LEG101-PR-3660 | PRO | PR-SL |

| ID | WBS | Activity | Duration | Start | Finish | Predecessors | Complete | Planned start | Planned finish | Resources | Cost | USERTEXT | Weight 1 | Total Weight % | Mapping Sheet Activity ID | Old Activity ID | Construction | Procurement |
| --- | --- | --- | --- | --- | --- | --- | --- | --- | --- | --- | --- | --- | --- | --- | --- | --- | --- | --- |
|  | 10 | **Final Panel boards** |  | 2026-06-08 | 2026-09-03 |  |  |  |  |  |  |  |  |  |  |  |  |  |
| JDH4-02-007-PR-2680 |  | PO for Final Panel Boards | 7d | 2026-06-08 A | 2026-06-08 A | JDH4-02-007-MA-1890 | 100% | 2026-06-25 | 2026-07-02 | Purchaser [56 h] |  | MKH2-02-002-PR-1040 | 0 | 0 | E3620 | CON-LEG101-PR-3690 | PRO | PR-SL |
| JDH4-02-007-PR-2687 |  | Material Fabrication for Final Panel Boards - Stage 1 | 9d | 2026-06-09 A | 2026-06-11 A | JDH4-02-007-PR-2680 | 100% | 2026-07-04 | 2026-07-13 | Purchaser [90 h] |  |  |  |  |  |  | PRO | PR-SL |
| JDH4-02-007-PR-2688 |  | Material Fabrication for Final Panel Boards - Stage 2 | 30d | 2026-06-13 A | 2026-06-15 A | JDH4-02-007-PR-2687 | 100% | 2026-07-14 | 2026-08-17 | Purchaser [300 h] |  |  |  |  |  |  | PRO | PR-SL |
| JDH4-02-007-PR-2689 |  | Material Fabrication for Final Panel Boards - Stage 3 | 30d | 2026-08-01 A | 2026-08-25 A | JDH4-02-007-PR-2688 | 100% | 2026-08-05 | 2026-09-08 | Purchaser [300 h] |  |  |  |  |  |  | PRO | PR-SL |
| JDH4-02-007-PR-2690 |  | Material Fabrication for Final Panel Boards - Stage 4 | 30d | 2026-08-01 A | 2026-08-20 A | JDH4-02-007-PR-2689 | 100% | 2026-09-09 | 2026-10-14 | QA/QC Engineer [792 h] |  | MKH2-02-002-PR-1140 | 0 | 0 | E3630 | CON-LEG101-PR-3700 | PRO | PR-SL |
| JDH4-02-007-PR-2700 |  | Material Delivery for Final Panel Boards | 28d | 2026-08-26 A | 2026-08-27 A | JDH4-02-007-PR-2690 | 100% | 2026-09-28 | 2026-10-29 | Cost For Eng,Pro and T&C [43.8]; QA/QC Engineer [72 h] | 179,076.09 | MKH2-02-002-PR-1240 | 0.00245815908030055 | 0.245815908030055 | E3640 | CON-LEG101-PR-3710 | PRO | PR-SL |
| JDH4-02-007-PR-2710 |  | Staging Time for Final Panel Boards | 7d | 2026-08-29 A | 2026-09-03 A | JDH4-02-007-PR-2700 | 100% | 2026-10-31 | 2026-11-07 | QA/QC Engineer [56 h] |  | MKH2-02-002-PR-4720 | 0 | 0 | E3650 | CON-LEG101-PR-3720 | PRO | PR-SL |
|  | 11 | **Local Control Panel/ Monitoring Control Panel** |  | 2026-01-26 | 2026-09-03 |  |  |  |  |  |  |  |  |  |  |  |  |  |
| JDH4-02-007-PR-2540 |  | PO for Local Control Panel/ Monitoring Control Panel | 7d | 2026-01-26 A | 2026-01-29 A | JDH4-02-007-MA-1910 | 100% | 2026-06-18 | 2026-06-25 | Purchaser [56 h] |  | MKH2-02-002-PR-1050 | 0 | 0 | E3330 | CON-LEG101-PR-3550 | PRO | PR-SL |
| JDH4-02-007-PR-2576 |  | Material Fabrication for Local Control Panel/ Monitoring Control Panel - Stage 1 | 30d | 2026-01-31 A | 2026-02-05 A | JDH4-02-007-PR-2540 | 100% | 2026-06-27 | 2026-07-30 | Purchaser [300 h] |  |  |  |  |  |  | PRO | PR-SL |
| JDH4-02-007-PR-2577 |  | Material Fabrication for Local Control Panel/ Monitoring Control Panel - Stage 2 | 30d | 2026-02-07 A | 2026-03-21 A | JDH4-02-007-PR-2576 | 100% | 2026-08-01 | 2026-09-03 | Purchaser [300 h] |  |  |  |  |  |  | PRO | PR-SL |
| JDH4-02-007-PR-2578 |  | Material Fabrication for Local Control Panel/ Monitoring Control Panel - Stage 3 | 30d | 2026-03-21 A | 2026-08-01 A | JDH4-02-007-PR-2577 | 100% | 2026-09-05 | 2026-10-10 | Purchaser [300 h] |  |  |  |  |  |  | PRO | PR-SL |
| JDH4-02-007-PR-2579 |  | Material Fabrication for Local Control Panel/ Monitoring Control Panel - Stage 4 | 30d | 2026-07-15 A | 2026-08-19 A | JDH4-02-007-PR-2578 | 100% | 2026-08-31 | 2026-10-06 | Purchaser [300 h] |  |  |  |  |  |  | PRO | PR-SL |
| JDH4-02-007-PR-2580 |  | Material Fabrication for Local Control Panel/ Monitoring Control Panel - Stage 5 | 30d | 2026-07-15 A | 2026-08-05 A | JDH4-02-007-PR-2579 | 100% | 2026-10-06 | 2026-11-10 | QA/QC Engineer [1200 h] |  | MKH2-02-002-PR-1150 | 0 | 0 | E3410 | CON-LEG101-PR-3590 | PRO | PR-SL |
| JDH4-02-007-PR-2620 |  | Material Delivery for Local Control Panel/ Monitoring Control Panel | 28d | 2026-08-20 A | 2026-08-27 A | JDH4-02-007-PR-2580, JDH4-02-007-PR-2650, JDH4-02-007-PR-2210 | 100% | 2026-11-04 | 2026-12-07 | Cost For Eng,Pro and T&C [43.8]; QA/QC Engineer [128 h] | 179,076.09 | MKH2-02-002-PR-1250 | 0.00245815908030055 | 0.245815908030055 | E3490 | CON-LEG101-PR-3630 | PRO | PR-SL |
| JDH4-02-007-PR-2660 |  | Staging Time for Local Control Panel/ Monitoring Control Panel | 7d | 2026-08-29 A | 2026-09-03 A | JDH4-02-007-PR-2620 | 100% | 2026-12-07 | 2026-12-15 | QA/QC Engineer [56 h] |  | MKH2-02-002-PR-4730 | 0 | 0 | E3570 | CON-LEG101-PR-3670 | PRO | PR-SL |
|  | 12 | **Engine Generators** |  | 2026-05-11 | 2026-06-28 |  |  |  |  |  |  |  |  |  |  |  |  |  |
| JDH4-02-007-PR-2720 |  | PO for Engine Generators | 7d | 2026-05-11 A | 2026-05-11 A | JDH4-02-007-MA-2070, JDH4-02-007-PR-2180 | 100% | 2026-05-13 | 2026-05-20 | Purchaser [56 h] |  | MKH2-02-002-PR-1050 | 0 | 0 | E3660 | CON-LEG101-PR-3730 | PRO | PR-SL |
| JDH4-02-007-PR-2726 |  | Material Fabrication for Engine Generators - Stage 1 | 30d | 2026-05-11 A | 2026-05-11 A | JDH4-02-007-PR-2720 | 100% | 2026-05-13 | 2026-06-20 | Purchaser [300 h] |  |  |  |  |  |  | PRO | PR-SL |
| JDH4-02-007-PR-2727 |  | Material Fabrication for Engine Generators - Stage 2 | 30d | 2026-05-14 A | 2026-05-16 A | JDH4-02-007-PR-2726 | 100% | 2026-05-20 | 2026-06-27 | Purchaser [300 h] |  |  |  |  |  |  | PRO | PR-SL |
| JDH4-02-007-PR-2728 |  | Material Fabrication for Engine Generators - Stage 3 | 30d | 2026-05-17 A | 2026-05-27 A | JDH4-02-007-PR-2727 | 100% | 2026-07-08 | 2026-08-11 | Purchaser [300 h] |  |  |  |  |  |  | PRO | PR-SL |
| JDH4-02-007-PR-2729 |  | Material Fabrication for Engine Generators - Stage 4 | 30d | 2026-05-28 A | 2026-06-06 A | JDH4-02-007-PR-2728 | 100% | 2026-08-12 | 2026-09-15 | Purchaser [300 h] |  |  |  |  |  |  | PRO | PR-SL |
| JDH4-02-007-PR-2730 |  | Material Fabrication for Engine Generators - Stage 5 | 30d | 2026-06-08 A | 2026-06-20 A | JDH4-02-007-PR-2729 | 100% | 2026-09-16 | 2026-10-21 | QA/QC Engineer [1200 h] |  | MKH2-02-002-PR-1150 | 0 | 0 | E3670 | CON-LEG101-PR-3740 | PRO | PR-SL |
| JDH4-02-007-PR-2740 |  | Material Delivery for Engine Generators | 28d | 2026-06-21 A | 2026-06-27 A | JDH4-02-007-PR-2730 | 100% | 2026-10-22 | 2026-11-23 | Cost For Eng,Pro and T&C [43.8]; QA/QC Engineer [128 h] | 179,076.09 | MKH2-02-002-PR-1250 | 0.00245815908030055 | 0.245815908030055 | E3680 | CON-LEG101-PR-3750 | PRO | PR-SL |
| JDH4-02-007-PR-2750 |  | Staging Time for Engine Generators | 7d | 2026-06-28 A | 2026-06-28 A | JDH4-02-007-PR-2740, JDH4-02-007-PR-2660, JDH4-02-007-PR-2660 FF | 100% | 2026-11-24 | 2026-12-01 | QA/QC Engineer [56 h] |  | MKH2-02-002-PR-4730 | 0 | 0 | E3690 | CON-LEG101-PR-3760 | PRO | PR-SL |

| ID | WBS | Activity | Duration | Start | Finish | Predecessors | Complete | Planned start | Planned finish | Resources | Cost | USERTEXT | Weight 1 | Total Weight % | Mapping Sheet Activity ID | Old Activity ID | Construction | Procurement |
| --- | --- | --- | --- | --- | --- | --- | --- | --- | --- | --- | --- | --- | --- | --- | --- | --- | --- | --- |
|  | 13 | **Standby Diesel Generator** |  | 2026-05-11 | 2026-06-29 |  |  |  |  |  |  |  |  |  |  |  |  |  |
| JDH4-02-007-PR-2550 |  | PO for Standby Diesel Generator | 7d | 2026-05-11 A | 2026-05-11 A | JDH4-02-007-MA-2050, JDH4-02-007-PR-1990 | 100% | 2026-05-13 | 2026-05-20 | Purchaser [56 h] |  | MKH2-02-002-PR-1060 | 0 | 0 | E3340 | CON-LEG101-PR-3560 | PRO | PR-SL |
| JDH4-02-007-PR-2587 |  | Material Fabrication for Standby Diesel Generator - Stage 1 | 30d | 2026-05-12 A | 2026-05-16 A | JDH4-02-007-PR-2550 | 100% | 2026-05-20 | 2026-06-27 | Purchaser [300 h] |  |  |  |  |  |  | PRO | PR-SL |
| JDH4-02-007-PR-2588 |  | Material Fabrication for Standby Diesel Generator - Stage 2 | 30d | 2026-05-17 A | 2026-05-31 A | JDH4-02-007-PR-2587 | 100% | 2026-06-28 | 2026-08-01 | Purchaser [300 h] |  |  |  |  |  |  | PRO | PR-SL |
| JDH4-02-007-PR-2589 |  | Material Fabrication for Standby Diesel Generator - Stage 3 | 30d | 2026-06-01 A | 2026-06-13 A | JDH4-02-007-PR-2588 | 100% | 2026-06-21 | 2026-07-25 | Purchaser [300 h] |  |  |  |  |  |  | PRO | PR-SL |
| JDH4-02-007-PR-2590 |  | Material Fabrication for Standby Diesel Generator - Stage 4 | 30d | 2026-06-14 A | 2026-06-23 A | JDH4-02-007-PR-2589 | 100% | 2026-08-03 | 2026-09-07 | QA/QC Engineer [960 h] |  | MKH2-02-002-PR-1160 | 0 | 0 | E3420 | CON-LEG101-PR-3600 | PRO | PR-SL |
| JDH4-02-007-PR-2630 |  | Material Delivery for Standby Diesel Generator | 14d | 2026-06-24 A | 2026-06-27 A | JDH4-02-007-PR-2590, JDH4-02-007-PR-1970 | 100% | 2026-09-07 | 2026-09-24 | Cost For Eng,Pro and T&C [43.8]; QA/QC Engineer [80 h] | 179,076.09 | MKH2-02-002-PR-1260 | 0.00245815908030055 | 0.245815908030055 | E3500 | CON-LEG101-PR-3640 | PRO | PR-SL |
| JDH4-02-007-PR-2670 |  | Staging Time for Standby Diesel Generator | 7d | 2026-06-28 A | 2026-06-29 A | JDH4-02-007-PR-2630, JDH4-02-007-PR-2710, JDH4-02-007-PR-2950, JDH4-02-007-PR-2160, JDH4-02-007-PR-2580 | 100% | 2026-10-21 | 2026-10-28 | QA/QC Engineer [56 h] |  | MKH2-02-002-PR-4740 | 0 | 0 | E3580 | CON-LEG101-PR-3680 | PRO | PR-SL |
|  | 14 | **Power Factor Correction Capacitor Bank** |  | 2026-01-26 | 2026-08-30 |  |  |  |  |  |  |  |  |  |  |  |  |  |
| JDH4-02-007-PR-2760 |  | PO for Power Factor Correction Capacitor Bank | 16d | 2026-01-26 A | 2026-01-29 A | JDH4-02-007-MA-2010 | 100% | 2026-06-18 | 2026-07-06 | Purchaser [128 h] |  | MKH2-02-002-PR-1030 | 0 | 0 | E3310 | CON-LEG101-PR-3770 | PRO | PR-SL |
| JDH4-02-007-PR-2795 |  | Material Fabrication for Power Factor Correction Capacitor Bank - Stage 1 | 14d | 2026-01-31 A | 2026-02-28 A | JDH4-02-007-PR-2760 | 100% | 2026-07-07 | 2026-07-22 | Purchaser [140 h] |  |  |  |  |  |  | PRO | PR-SL |
| JDH4-02-007-PR-2796 |  | Material Fabrication for Power Factor Correction Capacitor Bank - Stage 2 | 20d | 2026-03-01 A | 2026-03-28 A | JDH4-02-007-PR-2795 | 100% | 2026-07-23 | 2026-08-15 | Purchaser [200 h] |  |  |  |  |  |  | PRO | PR-SL |
| JDH4-02-007-PR-2797 |  | Material Fabrication for Power Factor Correction Capacitor Bank - Stage 3 | 30d | 2026-03-30 A | 2026-04-25 A | JDH4-02-007-PR-2796 | 100% | 2026-08-16 | 2026-09-19 | Purchaser [300 h] |  |  |  |  |  |  | PRO | PR-SL |
| JDH4-02-007-PR-2798 |  | Material Fabrication for Power Factor Correction Capacitor Bank - Stage 4 | 30d | 2026-04-26 A | 2026-08-06 A | JDH4-02-007-PR-2797 | 100% | 2026-09-20 | 2026-10-25 | Purchaser [300 h] |  |  |  |  |  |  | PRO | PR-SL |
| JDH4-02-007-PR-2799 |  | Material Fabrication for Power Factor Correction Capacitor Bank - Stage 5 | 30d | 2026-07-11 A | 2026-08-15 A | JDH4-02-007-PR-2798 | 100% | 2026-09-07 | 2026-10-13 | Purchaser [300 h] |  |  |  |  |  |  | PRO | PR-SL |
| JDH4-02-007-PR-2800 |  | Material Fabrication for Power Factor Correction Capacitor Bank - Stage 6 | 30d | 2026-07-11 A | 2026-08-08 A | JDH4-02-007-PR-2799 | 100% | 2026-10-13 | 2026-11-17 | Purchaser [1232 h] |  | MKH2-02-002-PR-1130 | 0 | 0 | E3390 | CON-LEG101-PR-3810 | PRO | PR-SL |
| JDH4-02-007-PR-2840 |  | Material Delivery for Power Factor Correction Capacitor Bank | 28d | 2026-08-16 A | 2026-08-26 A | JDH4-02-007-PR-2800, JDH4-02-007-PR-2130, JDH4-02-007-PR-2670 | 100% | 2026-11-18 | 2026-12-20 | Cost For Eng,Pro and T&C [43.8]; Purchaser [200 h] | 179,076.09 | MKH2-02-002-PR-1230 | 0.00245815908030055 | 0.245815908030055 | E3470 | CON-LEG101-PR-3850 | PRO | PR-SL |
| JDH4-02-007-PR-2880 |  | Staging Time for Power Factor Correction Capacitor Bank | 7d | 2026-08-27 A | 2026-08-30 A | JDH4-02-007-PR-2840, JDH4-02-007-PR-2170, JDH4-02-007-PR-2250, JDH4-02-007-PR-2150, JDH4-02-007-PR-2750 | 100% | 2026-12-21 | 2026-12-28 | Purchaser [56 h] |  | MKH2-02-002-PR-4710 | 0 | 0 | E3550 | CON-LEG101-PR-3890 | PRO | PR-SL |
|  | 15 | **Low-Voltage Electrical Power Conductors and Cables** |  | 2026-02-25 | 2026-07-25 |  |  |  |  |  |  |  |  |  |  |  |  |  |
| JDH4-02-007-PR-2770 |  | PO for Low-Voltage Electrical Power Conductors and Cables | 4d | 2026-02-25 A | 2026-02-25 A | JDH4-02-007-MA-2030, JDH4-02-007-PR-1990 | 100% | 2026-04-29 | 2026-05-03 | Purchaser [32 h] |  | MKH2-02-002-PR-1040 | 0 | 0 | E3320 | CON-LEG101-PR-3780 | PRO | PR-SL |
| JDH4-02-007-PR-2807 |  | Material Fabrication for Low-Voltage Electrical Power Conductors and Cables - Stage 1 | 25d | 2026-02-26 A | 2026-03-05 A | JDH4-02-007-PR-2770 | 100% | 2026-05-04 | 2026-06-04 | Purchaser [250 h] |  |  |  |  |  |  | PRO | PR-SL |
| JDH4-02-007-PR-2808 |  | Material Fabrication for Low-Voltage Electrical Power Conductors and Cables - Stage 2 | 25d | 2026-03-07 A | 2026-03-11 A | JDH4-02-007-PR-2807 | 100% | 2026-06-06 | 2026-07-04 | Purchaser [250 h] |  |  |  |  |  |  | PRO | PR-SL |
| JDH4-02-007-PR-2809 |  | Material Fabrication for Low-Voltage Electrical Power Conductors and Cables - Stage 3 | 25d | 2026-03-12 A | 2026-03-19 A | JDH4-02-007-PR-2808 | 100% | 2026-07-05 | 2026-08-02 | Purchaser [250 h] |  |  |  |  |  |  | PRO | PR-SL |
| JDH4-02-007-PR-2810 |  | Material Fabrication for Low-Voltage Electrical Power Conductors and Cables - Stage 4 | 25d | 2026-03-22 A | 2026-07-16 A | JDH4-02-007-PR-2809 | 100% | 2026-08-03 | 2026-08-31 | Purchaser [800 h] |  | MKH2-02-002-PR-1140 | 0 | 0 | E3400 | CON-LEG101-PR-3820 | PRO | PR-SL |
| JDH4-02-007-PR-2850 |  | Material Delivery for Low-Voltage Electrical Power Conductors and Cables | 28d | 2026-04-15 A | 2026-07-23 A | JDH4-02-007-PR-2810 | 100% | 2026-09-01 | 2026-10-04 | Cost For Eng,Pro and T&C [43.8]; Purchaser [64 h] | 179,076.09 | MKH2-02-002-PR-1240 | 0.00245815908030055 | 0.245815908030055 | E3480 | CON-LEG101-PR-3860 | PRO | PR-SL |
| JDH4-02-007-PR-2890 |  | Staging Time for Low-Voltage Electrical Power Conductors and Cables | 7d | 2026-04-16 A | 2026-07-25 A | JDH4-02-007-PR-2850 | 100% | 2026-10-07 | 2026-10-14 | Purchaser [56 h] |  | MKH2-02-002-PR-4720 | 0 | 0 | E3560 | CON-LEG101-PR-3900 | PRO | PR-SL |

| ID | WBS | Activity | Duration | Start | Finish | Predecessors | Complete | Planned start | Planned finish | Resources | Cost | USERTEXT | Weight 1 | Total Weight % | Mapping Sheet Activity ID | Old Activity ID | Construction | Procurement |
| --- | --- | --- | --- | --- | --- | --- | --- | --- | --- | --- | --- | --- | --- | --- | --- | --- | --- | --- |
|  | 16 | **Low Voltage Feeder Cable** |  | 2026-02-25 | 2026-05-10 |  |  |  |  |  |  |  |  |  |  |  |  |  |
| JDH4-02-007-PR-2920 |  | PO for Low Voltage Feeder Cable | 7d | 2026-02-25 A | 2026-02-25 A | JDH4-02-007-MA-1990, JDH4-02-007-PR-2770 | 100% | 2026-05-04 | 2026-05-11 | Purchaser [56 h] |  | MKH2-02-002-PR-1040 | 0 | 0 | E3620 | CON-LEG101-PR-3930 | PRO | PR-SL |
| JDH4-02-007-PR-2927 |  | Material Fabrication for Low Voltage Feeder Cable - Stage 1 | 9d | 2026-02-26 A | 2026-03-05 A | JDH4-02-007-PR-2920 | 100% | 2026-05-12 | 2026-05-21 | Purchaser [90 h] |  |  |  |  |  |  | PRO | PR-SL |
| JDH4-02-007-PR-2928 |  | Material Fabrication for Low Voltage Feeder Cable - Stage 2 | 30d | 2026-03-07 A | 2026-03-12 A | JDH4-02-007-PR-2927 | 100% | 2026-05-23 | 2026-06-29 | Purchaser [300 h] |  |  |  |  |  |  | PRO | PR-SL |
| JDH4-02-007-PR-2929 |  | Material Fabrication for Low Voltage Feeder Cable - Stage 3 | 30d | 2026-03-14 A | 2026-03-28 A | JDH4-02-007-PR-2928 | 100% | 2026-06-30 | 2026-08-03 | Purchaser [300 h] |  |  |  |  |  |  | PRO | PR-SL |
| JDH4-02-007-PR-2930 |  | Material Fabrication for Low Voltage Feeder Cable - Stage 4 | 30d | 2026-03-30 A | 2026-05-05 A | JDH4-02-007-PR-2929 | 100% | 2026-08-04 | 2026-09-07 | QA/QC Engineer [792 h] |  | MKH2-02-002-PR-1140 | 0 | 0 | E3630 | CON-LEG101-PR-3940 | PRO | PR-SL |
| JDH4-02-007-PR-2940 |  | Material Delivery for Low Voltage Feeder Cable | 28d | 2026-05-07 A | 2026-05-07 A | JDH4-02-007-PR-2930 | 100% | 2026-06-21 | 2026-07-22 | Cost For Eng,Pro and T&C [43.8]; QA/QC Engineer [72 h] | 179,076.09 | MKH2-02-002-PR-1240 | 0.00245815908030055 | 0.245815908030055 | E3640 | CON-LEG101-PR-3950 | PRO | PR-SL |
| JDH4-02-007-PR-2950 |  | Staging Time for Low Voltage Feeder Cable | 7d | 2026-05-09 A | 2026-05-10 A | JDH4-02-007-PR-2940 | 100% | 2026-07-23 | 2026-07-30 | QA/QC Engineer [56 h] |  | MKH2-02-002-PR-4720 | 0 | 0 | E3650 | CON-LEG101-PR-3960 | PRO | PR-SL |
|  | 17 | **Wiring Devices** |  | 2026-02-23 | 2026-05-06 |  |  |  |  |  |  |  |  |  |  |  |  |  |
| JDH4-02-007-PR-2780 |  | PO for Wiring Devices | 7d | 2026-02-23 A | 2026-03-26 A | JDH4-02-007-MA-1950 | 100% | 2026-04-08 | 2026-04-15 | Purchaser [56 h] |  | MKH2-02-002-PR-1050 | 0 | 0 | E3330 | CON-LEG101-PR-3790 | PRO | PR-SL |
| JDH4-02-007-PR-2815 |  | Material Fabrication for Wiring Devices - Stage 1 | 14d | 2026-02-26 A | 2026-02-28 A | JDH4-02-007-PR-2780 | 100% | 2026-04-16 | 2026-05-02 | Purchaser [140 h] |  |  |  |  |  |  | PRO | PR-SL |
| JDH4-02-007-PR-2816 |  | Material Fabrication for Wiring Devices - Stage 2 | 20d | 2026-02-28 A | 2026-03-03 A | JDH4-02-007-PR-2815 | 100% | 2026-05-03 | 2026-05-25 | Purchaser [200 h] |  |  |  |  |  |  | PRO | PR-SL |
| JDH4-02-007-PR-2817 |  | Material Fabrication for Wiring Devices - Stage 3 | 30d | 2026-03-04 A | 2026-03-07 A | JDH4-02-007-PR-2816 | 100% | 2026-05-30 | 2026-07-02 | Purchaser [300 h] |  |  |  |  |  |  | PRO | PR-SL |
| JDH4-02-007-PR-2818 |  | Material Fabrication for Wiring Devices - Stage 4 | 30d | 2026-03-08 A | 2026-03-14 A | JDH4-02-007-PR-2817 | 100% | 2026-07-04 | 2026-08-06 | Purchaser [300 h] |  |  |  |  |  |  | PRO | PR-SL |
| JDH4-02-007-PR-2819 |  | Material Fabrication for Wiring Devices - Stage 5 | 30d | 2026-03-15 A | 2026-03-23 A | JDH4-02-007-PR-2818 | 100% | 2026-08-08 | 2026-09-10 | Purchaser [300 h] |  |  |  |  |  |  | PRO | PR-SL |
| JDH4-02-007-PR-2820 |  | Material Fabrication for Wiring Devices - Stage 6 | 30d | 2026-03-26 A | 2026-03-30 A | JDH4-02-007-PR-2819 | 100% | 2026-09-12 | 2026-10-17 | QA/QC Engineer [1232 h] |  | MKH2-02-002-PR-1150 | 0 | 0 | E3410 | CON-LEG101-PR-3830 | PRO | PR-SL |
| JDH4-02-007-PR-2860 |  | Material Delivery for Wiring Devices | 15d | 2026-04-02 A | 2026-04-06 A | JDH4-02-007-PR-2820, JDH4-02-007-PR-2950, JDH4-02-007-PR-2670, JDH4-02-007-PR-2630, JDH4-02-007-PR-2670 FF | 100% | 2026-10-29 | 2026-11-15 | Cost For Eng,Pro and T&C [43.8]; QA/QC Engineer [128 h] | 179,076.09 | MKH2-02-002-PR-1250 | 0.00245815908030055 | 0.245815908030055 | E3490 | CON-LEG101-PR-3870 | PRO | PR-SL |
| JDH4-02-007-PR-2900 |  | Staging Time for Wiring Devices | 7d | 2026-05-06 A | 2026-05-06 A | JDH4-02-007-PR-2860, JDH4-02-007-PR-2750 | 100% | 2027-01-13 | 2027-01-20 | QA/QC Engineer [56 h] |  | MKH2-02-002-PR-4730 | 0 | 0 | E3570 | CON-LEG101-PR-3910 | PRO | PR-SL |
|  | 18 | **Enclosed Switches and Circuit Breakers** |  | 2026-03-17 | 2026-08-26 |  |  |  |  |  |  |  |  |  |  |  |  |  |
| JDH4-02-007-PR-2960 |  | PO for Enclosed Switches and Circuit Breakers | 7d | 2026-03-17 A | 2026-03-17 A | JDH4-02-007-MA-1970, JDH4-02-007-PR-2920 | 100% | 2026-05-30 | 2026-06-06 | Purchaser [56 h] |  | MKH2-02-002-PR-1050 | 0 | 0 | E3660 | CON-LEG101-PR-3970 | PRO | PR-SL |
| JDH4-02-007-PR-2965 |  | Material Fabrication for Enclosed Switches and Circuit Breakers - Stage 1 | 14d | 2026-03-18 A | 2026-03-29 A | JDH4-02-007-PR-2960 | 100% | 2026-06-07 | 2026-06-22 | Purchaser [140 h] |  |  |  |  |  |  | PRO | PR-SL |
| JDH4-02-007-PR-2966 |  | Material Fabrication for Enclosed Switches and Circuit Breakers - Stage 2 | 20d | 2026-03-30 A | 2026-04-06 A | JDH4-02-007-PR-2965 | 100% | 2026-06-23 | 2026-07-15 | Purchaser [200 h] |  |  |  |  |  |  | PRO | PR-SL |
| JDH4-02-007-PR-2967 |  | Material Fabrication for Enclosed Switches and Circuit Breakers - Stage 3 | 30d | 2026-04-07 A | 2026-06-13 A | JDH4-02-007-PR-2966 | 100% | 2026-07-16 | 2026-08-19 | Purchaser [300 h] |  |  |  |  |  |  | PRO | PR-SL |
| JDH4-02-007-PR-2968 |  | Material Fabrication for Enclosed Switches and Circuit Breakers - Stage 4 | 30d | 2026-08-01 A | 2026-08-16 A | JDH4-02-007-PR-2967 | 100% | 2026-08-26 | 2026-09-30 | Purchaser [300 h] |  |  |  |  |  |  | PRO | PR-SL |
| JDH4-02-007-PR-2969 |  | Material Fabrication for Enclosed Switches and Circuit Breakers - Stage 5 | 30d | 2026-08-01 A | 2026-08-13 A | JDH4-02-007-PR-2968 | 100% | 2026-10-01 | 2026-11-04 | Purchaser [300 h] |  |  |  |  |  |  | PRO | PR-SL |
| JDH4-02-007-PR-2970 |  | Material Fabrication for Enclosed Switches and Circuit Breakers - Stage 6 | 30d | 2026-08-01 A | 2026-08-05 A | JDH4-02-007-PR-2969 | 100% | 2026-11-05 | 2026-12-09 | QA/QC Engineer [1232 h] |  | MKH2-02-002-PR-1150 | 0 | 0 | E3670 | CON-LEG101-PR-3980 | PRO | PR-SL |
| JDH4-02-007-PR-2980 |  | Material Delivery for Enclosed Switches and Circuit Breakers | 28d | 2026-08-17 A | 2026-08-23 A | JDH4-02-007-PR-2970, JDH4-02-007-PR-2950 | 100% | 2026-11-09 | 2026-12-10 | Cost For Eng,Pro and T&C [43.8]; QA/QC Engineer [128 h] | 179,076.09 | MKH2-02-002-PR-1250 | 0.00245815908030055 | 0.245815908030055 | E3680 | CON-LEG101-PR-3990 | PRO | PR-SL |
| JDH4-02-007-PR-2990 |  | Staging Time for Enclosed Switches and Circuit Breakers | 7d | 2026-08-23 A | 2026-08-26 A | JDH4-02-007-PR-2980, JDH4-02-007-PR-2740 | 100% | 2026-12-12 | 2026-12-19 | QA/QC Engineer [56 h] |  | MKH2-02-002-PR-4730 | 0 | 0 | E3690 | CON-LEG101-PR-4000 | PRO | PR-SL |

| ID | WBS | Activity | Duration | Start | Finish | Predecessors | Complete | Planned start | Planned finish | Resources | Cost | USERTEXT | Weight 1 | Total Weight % | Mapping Sheet Activity ID | Old Activity ID | Construction | Procurement |
| --- | --- | --- | --- | --- | --- | --- | --- | --- | --- | --- | --- | --- | --- | --- | --- | --- | --- | --- |
|  | 19 | **Raceways for Electrical Systems** |  | 2026-02-21 | 2026-04-09 |  |  |  |  |  |  |  |  |  |  |  |  |  |
| JDH4-02-007-PR-2790 |  | PO for Raceways for Electrical Systems | 7d | 2026-02-21 A | 2026-02-21 A | JDH4-02-007-MA-2110 | 100% | 2026-04-29 | 2026-05-06 | Purchaser [56 h] |  | MKH2-02-002-PR-1060 | 0 | 0 | E3340 | CON-LEG101-PR-3800 | PRO | PR-SL |
| JDH4-02-007-PR-2827 |  | Material Fabrication for Raceways for Electrical Systems - Stage 1 | 30d | 2026-02-22 A | 2026-02-23 A | JDH4-02-007-PR-2790 | 100% | 2026-05-07 | 2026-06-14 | Purchaser [300 h] |  |  |  |  |  |  | PRO | PR-SL |
| JDH4-02-007-PR-2828 |  | Material Fabrication for Raceways for Electrical Systems - Stage 2 | 30d | 2026-02-24 A | 2026-02-28 A | JDH4-02-007-PR-2827 | 100% | 2026-06-15 | 2026-07-19 | Purchaser [300 h] |  |  |  |  |  |  | PRO | PR-SL |
| JDH4-02-007-PR-2829 |  | Material Fabrication for Raceways for Electrical Systems - Stage 3 | 30d | 2026-03-01 A | 2026-03-10 A | JDH4-02-007-PR-2828 | 100% | 2026-07-20 | 2026-08-23 | Purchaser [300 h] |  |  |  |  |  |  | PRO | PR-SL |
| JDH4-02-007-PR-2830 |  | Material Fabrication for Raceways for Electrical Systems - Stage 4 | 30d | 2026-03-11 A | 2026-03-14 A | JDH4-02-007-PR-2829 | 100% | 2026-08-24 | 2026-09-28 | QA/QC Engineer [960 h] |  | MKH2-02-002-PR-1160 | 0 | 0 | E3420 | CON-LEG101-PR-3840 | PRO | PR-SL |
| JDH4-02-007-PR-2870 |  | Material Delivery for Raceways for Electrical Systems | 28d | 2026-03-14 A | 2026-03-19 A | JDH4-02-007-PR-2830 | 100% | 2026-09-29 | 2026-10-31 | Cost For Eng,Pro and T&C [43.8]; QA/QC Engineer [80 h] | 179,076.09 | MKH2-02-002-PR-1260 | 0.00245815908030055 | 0.245815908030055 | E3500 | CON-LEG101-PR-3880 | PRO | PR-SL |
| JDH4-02-007-PR-2910 |  | Staging Time for Raceways for Electrical Systems | 7d | 2026-04-01 A | 2026-04-09 A | JDH4-02-007-PR-2870, JDH4-02-007-PR-2950, JDH4-02-007-PR-2890 | 100% | 2026-11-01 | 2026-11-08 | QA/QC Engineer [56 h] |  | MKH2-02-002-PR-4740 | 0 | 0 | E3580 | CON-LEG101-PR-3920 | PRO | PR-SL |
|  | 1 | **Electrical Manholes** |  | 2026-02-10 | 2026-04-26 |  |  |  |  |  |  |  |  |  |  |  |  |  |
| JDH4-02-007-PR-2520 |  | PO for Electrical Manholes | 16d | 2026-02-10 A | 2026-02-12 A | JDH4-02-007-MA-2150 FS+40d | 100% | 2026-03-04 | 2026-03-25 | Purchaser [128 h] |  | MKH2-02-002-PR-1030 | 0 | 0 | E3310 | CON-LEG101-PR-3530 | PRO | PR-SL |
| JDH4-02-007-PR-2555 |  | Material Fabrication for Electrical Manholes - Stage 1 | 14d | 2026-02-14 A | 2026-04-08 A | JDH4-02-007-PR-2520 | 100% | 2026-03-26 | 2026-04-11 | Purchaser [140 h] |  |  |  |  |  |  | PRO | PR-SL |
| JDH4-02-007-PR-2556 |  | Material Fabrication for Electrical Manholes - Stage 2 | 20d | 2026-04-08 A | 2026-04-11 A | JDH4-02-007-PR-2555 | 100% | 2026-04-30 | 2026-05-23 | Purchaser [200 h] |  |  |  |  |  |  | PRO | PR-SL |
| JDH4-02-007-PR-2557 |  | Material Fabrication for Electrical Manholes - Stage 3 | 30d | 2026-04-08 A | 2026-04-19 A | JDH4-02-007-PR-2556 | 100% | 2026-05-24 | 2026-06-30 | Purchaser [300 h] |  |  |  |  |  |  | PRO | PR-SL |
| JDH4-02-007-PR-2558 |  | Material Fabrication for Electrical Manholes - Stage 4 | 30d | 2026-04-12 A | 2026-04-19 A | JDH4-02-007-PR-2557 | 100% | 2026-07-01 | 2026-08-04 | Purchaser [300 h] |  |  |  |  |  |  | PRO | PR-SL |
| JDH4-02-007-PR-2559 |  | Material Fabrication for Electrical Manholes - Stage 5 | 30d | 2026-04-13 A | 2026-04-16 A | JDH4-02-007-PR-2558 | 100% | 2026-08-05 | 2026-09-08 | Purchaser [300 h] |  |  |  |  |  |  | PRO | PR-SL |
| JDH4-02-007-PR-2560 |  | Material Fabrication for Electrical Manholes - Stage 6 | 30d | 2026-04-16 A | 2026-04-20 A | JDH4-02-007-PR-2559, JDH4-02-007-PR-2890 | 100% | 2026-10-06 | 2026-11-09 | QA/QC Engineer [1232 h] |  | MKH2-02-002-PR-1130 | 0 | 0 | E3390 | CON-LEG101-PR-3570 | PRO | PR-SL |
| JDH4-02-007-PR-2600 |  | Material Delivery for Electrical Manholes | 15d | 2026-04-18 A | 2026-04-22 A | JDH4-02-007-PR-2560, JDH4-02-007-PR-2910, JDH4-02-007-PR-2950 | 100% | 2026-11-09 | 2026-11-25 | Cost For Eng,Pro and T&C [43.8]; QA/QC Engineer [200 h] | 179,076.09 | MKH2-02-002-PR-1230 | 0.00245815908030055 | 0.245815908030055 | E3470 | CON-LEG101-PR-3610 | PRO | PR-SL |
| JDH4-02-007-PR-2640 |  | Staging Time for Electrical Manholes | 7d | 2026-04-24 A | 2026-04-26 A | JDH4-02-007-PR-2600, JDH4-02-007-PR-2990, JDH4-02-007-PR-2130, JDH4-02-007-PR-2170, JDH4-02-007-PR-2250, JDH4-02-007-PR-2150, JDH4-02-007-PR-2900 SS+5d, JDH4-02-007-PR-2990 FF | 100% | 2027-03-04 | 2027-03-15 | QA/QC Engineer [56 h] |  | MKH2-02-002-PR-4710 | 0 | 0 | E3550 | CON-LEG101-PR-3650 | PRO | PR-SL |
|  | 20 | **ICT (Data& telephone System)** |  | 2026-03-21 | 2026-04-14 |  |  |  |  |  |  |  |  |  |  |  |  |  |
| JDH4-02-007-PR-3040 |  | PO for ICT (Data& telephone System) | 7d | 2026-03-21 A | 2026-03-23 A | JDH4-02-007-MA-2130, JDH4-02-007-PR-2920 | 100% | 2026-04-21 | 2026-04-28 | Purchaser [56 h] |  | MKH2-02-002-PR-1050 | 0 | 0 | E3330 | CON-LEG101-PR-4050 | PRO | PR-SL |
| JDH4-02-007-PR-3055 |  | Material Fabrication for ICT (Data& telephone System) - Stage 1 | 14d | 2026-03-23 A | 2026-03-25 A | JDH4-02-007-PR-3040 | 100% | 2026-05-06 | 2026-05-21 | Purchaser [140 h] |  |  |  |  |  |  | PRO | PR-SL |
| JDH4-02-007-PR-3056 |  | Material Fabrication for ICT (Data& telephone System) - Stage 2 | 20d | 2026-03-25 A | 2026-03-28 A | JDH4-02-007-PR-3055 | 100% | 2026-05-23 | 2026-06-17 | Purchaser [200 h] |  |  |  |  |  |  | PRO | PR-SL |
| JDH4-02-007-PR-3057 |  | Material Fabrication for ICT (Data& telephone System) - Stage 3 | 30d | 2026-03-29 A | 2026-03-30 A | JDH4-02-007-PR-3056 | 100% | 2026-06-18 | 2026-07-22 | Purchaser [300 h] |  |  |  |  |  |  | PRO | PR-SL |
| JDH4-02-007-PR-3058 |  | Material Fabrication for ICT (Data& telephone System) - Stage 4 | 30d | 2026-03-31 A | 2026-04-01 A | JDH4-02-007-PR-3057 | 100% | 2026-07-23 | 2026-08-26 | Purchaser [300 h] |  |  |  |  |  |  | PRO | PR-SL |
| JDH4-02-007-PR-3059 |  | Material Fabrication for ICT (Data& telephone System) - Stage 5 | 30d | 2026-04-02 A | 2026-04-06 A | JDH4-02-007-PR-3058 | 100% | 2026-08-27 | 2026-10-01 | Purchaser [300 h] |  |  |  |  |  |  | PRO | PR-SL |
| JDH4-02-007-PR-3060 |  | Material Fabrication for ICT (Data& telephone System) - Stage 6 | 30d | 2026-04-07 A | 2026-04-09 A | JDH4-02-007-PR-3059, JDH4-02-007-PR-2710, JDH4-02-007-PR-2650 | 100% | 2026-10-10 | 2026-11-12 | QA/QC Engineer [1232 h] |  | MKH2-02-002-PR-1150 | 0 | 0 | E3410 | CON-LEG101-PR-4070 | PRO | PR-SL |
| JDH4-02-007-PR-3080 |  | Material Delivery for ICT (Data& telephone System) | 28d | 2026-04-12 A | 2026-04-12 A | JDH4-02-007-PR-3060, JDH4-02-007-PR-2820 | 100% | 2026-11-14 | 2026-12-15 | Cost For Eng,Pro and T&C [43.8]; QA/QC Engineer [128 h] | 179,076.09 | MKH2-02-002-PR-1250 | 0.00245815908030055 | 0.245815908030055 | E3490 | CON-LEG101-PR-4090 | PRO | PR-SL |
| JDH4-02-007-PR-3100 |  | Staging Time for ICT (Data& telephone System) | 7d | 2026-04-12 A | 2026-04-14 A | JDH4-02-007-PR-3080, JDH4-02-007-PR-2860, JDH4-02-007-PR-2840 | 100% | 2026-12-24 | 2026-12-31 | QA/QC Engineer [56 h] |  | MKH2-02-002-PR-4730 | 0 | 0 | E3570 | CON-LEG101-PR-4110 | PRO | PR-SL |

| ID | WBS | Activity | Duration | Start | Finish | Predecessors | Complete | Planned start | Planned finish | Resources | Cost | USERTEXT | Weight 1 | Total Weight % | Mapping Sheet Activity ID | Old Activity ID | Construction | Procurement |
| --- | --- | --- | --- | --- | --- | --- | --- | --- | --- | --- | --- | --- | --- | --- | --- | --- | --- | --- |
|  | 21 | **Programmable Logic Controllers** |  | 2026-01-25 | 2026-10-06 |  |  |  |  |  |  |  |  |  |  |  |  |  |
| JDH4-02-007-PR-3120 |  | PO for Programmable Logic Controllers | 7d | 2026-01-25 A | 2026-01-29 A | JDH4-02-007-MA-2210 | 100% | 2026-04-08 | 2026-04-15 | Purchaser [56 h] |  | MKH2-02-002-PR-1050 | 0 | 0 | E3660 | CON-LEG101-PR-4130 | PRO | PR-SL |
| JDH4-02-007-PR-3125 |  | Material Fabrication for Programmable Logic Controllers - Stage 1 | 14d | 2026-02-01 A | 2026-02-12 A | JDH4-02-007-PR-3120 | 100% | 2026-05-13 | 2026-06-01 | Purchaser [140 h] |  |  |  |  |  |  | PRO | PR-SL |
| JDH4-02-007-PR-3126 |  | Material Fabrication for Programmable Logic Controllers - Stage 2 | 20d | 2026-02-14 A | 2026-02-21 A | JDH4-02-007-PR-3125 | 100% | 2026-06-02 | 2026-06-24 | Purchaser [200 h] |  |  |  |  |  |  | PRO | PR-SL |
| JDH4-02-007-PR-3127 |  | Material Fabrication for Programmable Logic Controllers - Stage 3 | 30d | 2026-02-22 A | 2026-06-04 A | JDH4-02-007-PR-3126 | 100% | 2026-06-25 | 2026-07-29 | Purchaser [300 h] |  |  |  |  |  |  | PRO | PR-SL |
| JDH4-02-007-PR-3128 |  | Material Fabrication for Programmable Logic Controllers - Stage 4 | 30d | 2026-06-06 A | 2026-09-29 A | JDH4-02-007-PR-3127 | 100% | 2026-06-17 | 2026-07-22 | Purchaser [300 h] |  |  |  |  |  |  | PRO | PR-SL |
| JDH4-02-007-PR-3129 |  | Material Fabrication for Programmable Logic Controllers - Stage 5 | 30d | 2026-06-06 A | 2026-08-20 A | JDH4-02-007-PR-3128 | 100% | 2026-09-28 | 2026-11-01 | Purchaser [300 h] |  |  |  |  |  |  | PRO | PR-SL |
| JDH4-02-007-PR-3130 |  | Material Fabrication for Programmable Logic Controllers - Stage 6 | 30d | 2026-06-06 A | 2026-09-27 A | JDH4-02-007-PR-3129 | 100% | 2026-11-02 | 2026-12-06 | QA/QC Engineer [1232 h] |  | MKH2-02-002-PR-1150 | 0 | 0 | E3670 | CON-LEG101-PR-4140 | PRO | PR-SL |
| JDH4-02-007-PR-3140 |  | Material Delivery for Programmable Logic Controllers | 28d | 2026-09-30 A | 2026-10-04 A | JDH4-02-007-PR-3130 | 100% | 2026-10-11 | 2026-11-11 | Cost For Eng,Pro and T&C [43.8]; QA/QC Engineer [128 h] | 179,076.09 | MKH2-02-002-PR-1250 | 0.00245815908030055 | 0.245815908030055 | E3680 | CON-LEG101-PR-4150 | PRO | PR-SL |
| JDH4-02-007-PR-3150 |  | Staging Time for Programmable Logic Controllers | 7d | 2026-10-05 A | 2026-10-06 A | JDH4-02-007-PR-3140, JDH4-02-007-PR-2600, JDH4-02-007-MS-1120 | 100% | 2026-11-12 | 2026-11-19 | QA/QC Engineer [56 h] |  | MKH2-02-002-PR-4730 | 0 | 0 | E3690 | CON-LEG101-PR-4160 | PRO | PR-SL |
|  | 22 | **Process Control Wiring** |  | 2026-01-25 | 2026-10-04 |  |  |  |  |  |  |  |  |  |  |  |  |  |
| JDH4-02-007-PR-3050 |  | PO for Process Control Wiring | 12d | 2026-01-25 A | 2026-01-29 A | JDH4-02-007-MA-2190 | 100% | 2026-05-06 | 2026-05-19 | Purchaser [56 h] |  | MKH2-02-002-PR-1060 | 0 | 0 | E3340 | CON-LEG101-PR-4060 | PRO | PR-SL |
| JDH4-02-007-PR-3067 |  | Material Fabrication for Process Control Wiring - Stage 1 | 30d | 2026-01-30 A | 2026-02-07 A | JDH4-02-007-PR-3050 | 100% | 2026-05-20 | 2026-06-27 | Purchaser [300 h] |  |  |  |  |  |  | PRO | PR-SL |
| JDH4-02-007-PR-3068 |  | Material Fabrication for Process Control Wiring - Stage 2 | 30d | 2026-02-09 A | 2026-02-19 A | JDH4-02-007-PR-3067 | 100% | 2026-06-28 | 2026-08-01 | Purchaser [300 h] |  |  |  |  |  |  | PRO | PR-SL |
| JDH4-02-007-PR-3069 |  | Material Fabrication for Process Control Wiring - Stage 3 | 30d | 2026-02-21 A | 2026-09-27 A | JDH4-02-007-PR-3068 | 100% | 2026-08-02 | 2026-09-05 | Purchaser [300 h] |  |  |  |  |  |  | PRO | PR-SL |
| JDH4-02-007-PR-3070 |  | Material Fabrication for Process Control Wiring - Stage 4 | 30d | 2026-08-01 A | 2026-09-28 A | JDH4-02-007-PR-3069 | 100% | 2026-09-17 | 2026-10-24 | QA/QC Engineer [960 h] |  | MKH2-02-002-PR-1160 | 0 | 0 | E3420 | CON-LEG101-PR-4080 | PRO | PR-SL |
| JDH4-02-007-PR-3090 |  | Material Delivery for Process Control Wiring | 28d | 2026-09-29 A | 2026-09-29 A | JDH4-02-007-PR-3070 | 100% | 2026-10-25 | 2026-11-25 | Cost For Eng,Pro and T&C [43.8]; QA/QC Engineer [80 h] | 179,076.09 | MKH2-02-002-PR-1260 | 0.00245815908030055 | 0.245815908030055 | E3500 | CON-LEG101-PR-4100 | PRO | PR-SL |
| JDH4-02-007-PR-3110 |  | Staging Time for Process Control Wiring | 7d | 2026-09-30 A | 2026-10-04 A | JDH4-02-007-PR-3090, JDH4-02-007-PR-2910 | 100% | 2026-11-26 | 2026-12-03 | QA/QC Engineer [56 h] |  | MKH2-02-002-PR-4740 | 0 | 0 | E3580 | CON-LEG101-PR-4120 | PRO | PR-SL |
|  | 23 | **Instrumentation for Process Systems** |  | 2026-01-25 | 2026-08-30 |  |  |  |  |  |  |  |  |  |  |  |  |  |
| JDH4-02-007-PR-3000 |  | PO for Instrumentation for Process Systems | 16d | 2026-01-25 A | 2026-01-29 A | JDH4-02-007-PR-2530 | 100% | 2026-04-21 | 2026-05-09 | Purchaser [128 h] |  | MKH2-02-002-PR-1030 | 0 | 0 | E3310 | CON-LEG101-PR-4010 | PRO | PR-SL |
| JDH4-02-007-PR-3005 |  | Material Fabrication for Instrumentation for Process Systems - Stage 1 | 14d | 2026-02-01 A | 2026-02-12 A | JDH4-02-007-PR-3000 | 100% | 2026-05-30 | 2026-06-14 | Purchaser [140 h] |  |  |  |  |  |  | PRO | PR-SL |
| JDH4-02-007-PR-3006 |  | Material Fabrication for Instrumentation for Process Systems - Stage 2 | 20d | 2026-02-14 A | 2026-02-21 A | JDH4-02-007-PR-3005 | 100% | 2026-06-15 | 2026-07-07 | Purchaser [200 h] |  |  |  |  |  |  | PRO | PR-SL |
| JDH4-02-007-PR-3007 |  | Material Fabrication for Instrumentation for Process Systems - Stage 3 | 30d | 2026-02-22 A | 2026-07-16 A | JDH4-02-007-PR-3006 | 100% | 2026-07-08 | 2026-08-11 | Purchaser [300 h] |  |  |  |  |  |  | PRO | PR-SL |
| JDH4-02-007-PR-3008 |  | Material Fabrication for Instrumentation for Process Systems - Stage 4 | 30d | 2026-08-01 A | 2026-08-19 A | JDH4-02-007-PR-3007 | 100% | 2026-09-02 | 2026-10-08 | Purchaser [300 h] |  |  |  |  |  |  | PRO | PR-SL |
| JDH4-02-007-PR-3009 |  | Material Fabrication for Instrumentation for Process Systems - Stage 5 | 30d | 2026-08-01 A | 2026-08-12 A | JDH4-02-007-PR-3008 | 100% | 2026-10-08 | 2026-11-12 | Purchaser [300 h] |  |  |  |  |  |  | PRO | PR-SL |
| JDH4-02-007-PR-3010 |  | Material Fabrication for Instrumentation for Process Systems - Stage 6 | 30d | 2026-08-01 A | 2026-08-05 A | JDH4-02-007-PR-3009 | 100% | 2026-11-12 | 2026-12-17 | QA/QC Engineer [1232 h] |  | MKH2-02-002-PR-1130 | 0 | 0 | E3390 | CON-LEG101-PR-4020 | PRO | PR-SL |
| JDH4-02-007-PR-3020 |  | Material Delivery for Instrumentation for Process Systems | 28d | 2026-08-22 A | 2026-08-26 A | JDH4-02-007-PR-3010 | 100% | 2026-10-22 | 2026-11-23 | Cost For Eng,Pro and T&C [43.8]; QA/QC Engineer [200 h] | 179,076.09 | MKH2-02-002-PR-1230 | 0.00245815908030055 | 0.245815908030055 | E3470 | CON-LEG101-PR-4030 | PRO | PR-SL |
| JDH4-02-007-PR-3030 |  | Staging Time for Instrumentation for Process Systems | 7d | 2026-08-26 A | 2026-08-30 A | JDH4-02-007-PR-3020, JDH4-02-007-PR-3150 | 100% | 2026-12-20 | 2026-12-27 | QA/QC Engineer [56 h] |  | MKH2-02-002-PR-4710 | 0 | 0 | E3550 | CON-LEG101-PR-4040 | PRO | PR-SL |

| ID | WBS | Activity | Duration | Start | Finish | Predecessors | Complete | Planned start | Planned finish | Resources | Cost | Actual cost | Old Activity ID | JDH4-02-007 | Construction |
| --- | --- | --- | --- | --- | --- | --- | --- | --- | --- | --- | --- | --- | --- | --- | --- |
|  | 5 | **Construction** |  | 2025-12-04 | 2026-12-29 |  |  |  |  |  |  |  |  |  |  |
|  | 1 | **Demolition Works** |  | 2025-12-18 | 2026-10-04 |  |  |  |  |  |  |  |  |  |  |
|  | 2 | **Demolition in Road network** |  | 2026-01-31 | 2026-08-29 |  |  |  |  |  |  |  |  |  |  |
| JDH4-02-007-CN-1000 |  | Concrete demolition works at the existing Underpass [Demolition Works ] | 5d | 2026-01-31 A | 2026-02-19 A | JDH4-02-007-PS-1070, JDH4-02-007-PS-1090, JDH4-02-007-PA-1000, JDH4-02-007-MB-1090, JDH4-02-007-MB-1100, JDH4-02-007-MB-1080, JDH4-02-007-MB-1070 | 100% | 2026-02-11 | 2026-02-16 | Excavator [100 h]; Loader [100 h]; Bulldozer [50 h]; Truck [250 h]; Labor [300 h]; Driver [250 h]; Eq. Operator [50 h]; Concrete demolition works at the existing Underpass [93.8] | 26,491.56 |  | A1000 | RO | DW |
| JDH4-02-007-CN-1110 |  | Milling of the existing asphalt layer [Demolition Works ] | 15d | 2026-04-15 A | 2026-06-24 A | JDH4-02-007-CN-1080, JDH4-02-007-PS-1060 | 100% | 2026-06-04 | 2026-06-21 | Loader [150 h]; Truck [1200 h]; Milling machine [300 h]; Bobcat [150 h]; Labor [900 h]; Driver [600 h]; Eq. Operator [150 h]; Milling of the existing asphalt layer [1340] | 25,230.06 |  | A1040 | RO | DW |
| JDH4-02-007-CN-1080 |  | Removal of the existing asphalt layers (up to base course layer) [Demolition Works ] | 16d | 2026-04-16 A | 2026-06-25 A | JDH4-02-007-CN-1000, JDH4-02-007-MS-1020, JDH4-02-007-MS-1030 | 100% | 2026-05-13 | 2026-06-03 | Loader [210 h]; Truck [840 h]; Milling machine [420 h]; Bobcat [210 h]; Labor [1260 h]; Driver [840 h]; Eq. Operator [210 h]; Removal of the existing asphalt layers (up to base course layer) [1340] | 37,845.08 |  | A1020 | RO | DW |
| JDH4-02-007-CN-1170 |  | Re-use and compaction of the existing aggregate base course layer | 7d | 2026-08-20 A | 2026-08-29 A | JDH4-02-007-CN-1110 | 100% | 2026-09-09 | 2026-09-16 | Bulldozer [150 h]; Water Tanker [150 h]; Truck [600 h]; Road Roller [150 h]; Compactor [300 h]; Labor [600 h]; Driver [450 h]; Eq. Operator [150 h]; Re-use and compaction of the existing aggregate base course layer [1340] | 37,845.08 |  | A1060 | RO | DW |
|  | 4 | **Demolition in TSE network** |  | 2025-12-18 | 2026-03-17 |  |  |  |  |  |  |  |  |  |  |
| JDH4-02-007-CN-1480 |  | Pipe with diameter 63 mm pipe [Demolition Works ] | 10d | 2025-12-18 A | 2025-12-29 A | JDH4-02-007-PA-1000 | 100% |  |  | Excavator [100 h]; Truck [100 h]; Labor [100 h]; Driver [100 h]; Eq. Operator [100 h]; Pipe with diameter 63 mm pipe [13.4] | 1,892.25 | 1,892.25 | A1190 | RO | DW |
| JDH4-02-007-CN-1560 |  | Pipe with diameter 200 mm pipe [Demolition Works ] | 10d | 2025-12-18 A | 2025-12-29 A | JDH4-02-007-CN-1480 | 100% |  |  | Excavator [120 h]; Truck [240 h]; Labor [120 h]; Driver [120 h]; Eq. Operator [120 h]; Pipe with diameter 200 mm pipe [254.6] | 47,937.11 | 47,937.11 | A1210 | RO | DW |
| JDH4-02-007-CN-1610 |  | Wash out valve with chamber; on 200 mm dia pipeline Depth 1.5 - 4.0m [Demolition Works ] | 10d | 2025-12-18 A | 2025-12-29 A | JDH4-02-007-CN-1560 | 100% |  |  | Labor [100 h]; Wash out valve with chamber; on 200 mm dia pipeline Depth 1.5 - 4.0m [0.67] | 20,184.04 | 20,184.04 | A1250 | RO | DW |
| JDH4-02-007-CN-1620 |  | Gate valves on 200 mm pipeline [Demolition Works ] | 10d | 2025-12-18 A | 2025-12-29 A | JDH4-02-007-CN-1610, JDH4-02-007-EN-1710, JDH4-02-007-EN-1700, JDH4-02-007-EN-1690, JDH4-02-007-EN-1680, JDH4-02-007-EN-1640, JDH4-02-007-EN-1460, JDH4-02-007-EN-1450, JDH4-02-007-EN-1440, JDH4-02-007-EN-1490, JDH4-02-007-EN-1480, JDH4-02-007-EN-1470 | 100% |  |  | Labor [100 h]; Gate valves on 200 mm pipeline [2.01] | 3,784.51 | 3,784.51 | A1270 | RO | DW |
| JDH4-02-007-CN-1590 |  | Pipe with diameter 250 mm pipe [Demolition Works ] | 10d | 2026-03-10 A | 2026-03-17 A | JDH4-02-007-CN-1560 | 100% | 2026-04-08 | 2026-04-19 | Excavator [150 h]; Truck [300 h]; Labor [150 h]; Driver [150 h]; Eq. Operator [150 h]; Pipe with diameter 250 mm pipe [67] | 18,922.54 |  | A1230 | RO | DW |
|  | 6 | **Demolition in Storm water network** |  | 2025-12-25 | 2026-08-26 |  |  |  |  |  |  |  |  |  |  |
| JDH4-02-007-CN-1670 |  | Manhole [Demolition Works ] | 4d | 2025-12-25 A | 2025-12-29 A | JDH4-02-007-CN-1480, JDH4-02-007-PA-1000 | 100% |  |  | Excavator [100 h]; Truck [200 h]; Labor [100 h]; Driver [100 h]; Eq. Operator [100 h]; Manhole [0.67] | 8,830.52 | 8,830.52 | A1390 | RO | DW |
| JDH4-02-007-CN-1690 |  | Pipe with diameter 600 mm pipe [Demolition Works ] | 4d | 2025-12-25 A | 2025-12-29 A | JDH4-02-007-CN-1610 | 100% |  |  | Excavator [120 h]; Truck [240 h]; Labor [120 h]; Driver [120 h]; Eq. Operator [120 h]; Pipe with diameter 600 mm pipe [18.76] | 14,128.83 | 14,128.83 | A1430 | RO | DW |
| JDH4-02-007-CN-1700 |  | Pipe with diameter 800 mm pipe [Demolition Works ] | 4d | 2025-12-25 A | 2025-12-29 A | JDH4-02-007-CN-1690 | 100% |  |  | Excavator [150 h]; Truck [300 h]; Labor [150 h]; Driver [150 h]; Eq. Operator [150 h]; Pipe with diameter 800 mm pipe [16.75] | 14,191.91 | 14,191.91 | A1450 | RO | DW |
| JDH4-02-007-CN-1680 |  | Baffle box with dimentions 3.04x7.80m [Demolition Works ] | 4d | 2026-08-05 A | 2026-08-26 A | JDH4-02-007-CN-1670, JDH4-02-007-CN-1590 FS+20d | 100% | 2026-09-09 | 2026-09-13 | Excavator [100 h]; Truck [200 h]; Labor [100 h]; Driver [100 h]; Eq. Operator [100 h]; Baffle box with dimentions 3.04x7.80m [0.67] | 18,922.54 |  | A1410 | RO | DW |
|  | 5 | **Demolition in Sewerage network** |  | 2025-12-25 | 2025-12-29 |  |  |  |  |  |  |  |  |  |  |
| JDH4-02-007-CN-1630 |  | Pipe with diameter 200 mm pipe with depth 2.50 - 3.50m [Demolition Works ] | 4d | 2025-12-25 A | 2025-12-29 A | JDH4-02-007-CN-1670, JDH4-02-007-PA-1000 | 100% |  |  | Excavator [100 h]; Truck [200 h]; Labor [100 h]; Driver [100 h]; Eq. Operator [100 h]; Pipe with diameter 200 mm pipe with depth 2.50 - 3.50m [46.9] | 26,491.56 | 26,491.56 | A1300 | RO | DW |
| JDH4-02-007-CN-1640 |  | Pipe with diameter 250 mm pipe with depth 3.50 - 4.50m [Demolition Works ] | 4d | 2025-12-25 A | 2025-12-29 A | JDH4-02-007-CN-1630, JDH4-02-007-MA-2170 | 100% |  |  | Excavator [120 h]; Truck [240 h]; Labor [120 h]; Driver [120 h]; Eq. Operator [120 h]; Pipe with diameter 250 mm pipe with depth 3.50 - 4.50m [50.92] | 38,349.69 | 38,349.69 | A1320 | RO | DW |
| JDH4-02-007-CN-1650 |  | Manhole with depth 1.50m - 2.50m [Demolition Works ] | 4d | 2025-12-25 A | 2025-12-29 A | JDH4-02-007-CN-1640 | 100% |  |  | Excavator [150 h]; Truck [300 h]; Labor [150 h]; Driver [150 h]; Eq. Operator [150 h]; Manhole with depth 1.50m - 2.50m [0.67] | 12,615.03 | 12,615.03 | A1340 | RO | DW |
| JDH4-02-007-CN-1660 |  | Manhole with depth 4.50m - 5.50m [Demolition Works ] | 4d | 2025-12-25 A | 2025-12-29 A | JDH4-02-007-CN-1650 | 100% |  |  | Excavator [75 h]; Truck [225 h]; Labor [150 h]; Driver [150 h]; Eq. Operator [150 h]; Manhole with depth 4.50m - 5.50m [0.67] | 15,768.79 | 15,768.79 | A1360 | RO | DW |
|  | 3 | **Demolition in Potable water network** |  | 2025-12-25 | 2025-12-29 |  |  |  |  |  |  |  |  |  |  |
| JDH4-02-007-CN-1340 |  | Single house connection dia 63 mm [Demolition Works ] | 4d | 2025-12-25 A | 2025-12-29 A | JDH4-02-007-CN-1630, JDH4-02-007-PA-1000 | 100% |  |  | Excavator [120 h]; Truck [240 h]; Labor [120 h]; Driver [120 h]; Eq. Operator [120 h]; Single house connection dia 63 mm [83.75] | 15,768.79 | 15,768.79 | A1120 | RO | DW |
| JDH4-02-007-CN-1400 |  | Pipe with diameter 200 mm [Demolition Works ] | 4d | 2025-12-25 A | 2025-12-29 A | JDH4-02-007-CN-1340 | 100% |  |  | Excavator [140 h]; Truck [280 h]; Labor [140 h]; Driver [140 h]; Eq. Operator [140 h]; Pipe with diameter 200 mm [65.66] | 15,453.41 | 15,453.41 | A1140 | RO | DW |
| JDH4-02-007-CN-1430 |  | Wash out valve with chamber; on 200 mm dia pipeline [Demolition Works ] | 4d | 2025-12-25 A | 2025-12-29 A | JDH4-02-007-CN-1400 | 100% |  |  | Labor [150 h]; Wash out valve with chamber; on 200 mm dia pipeline [0.67] | 15,768.79 | 15,768.79 | A1160 | RO | DW |

| ID | WBS | Activity | Duration | Start | Finish | Predecessors | Complete | Planned start | Planned finish | Resources | Cost | Actual cost | Old Activity ID | JDH4-02-007 | Construction |
| --- | --- | --- | --- | --- | --- | --- | --- | --- | --- | --- | --- | --- | --- | --- | --- |
|  | 1 | **Demolition in Electrical works** |  | 2025-12-25 | 2026-10-04 |  |  |  |  |  |  |  |  |  |  |
| JDH4-02-007-CN-1250 |  | Demolishing of existing Lighting Pole [Demolition Works ](Completed) | 33d | 2025-12-25 A | 2026-02-01 A | JDH4-02-007-CN-1340 | 100% |  |  | Excavator [140 h]; Loader [70 h]; Truck [840 h]; Labor [700 h]; Driver [420 h]; Eq. Operator [140 h]; Demolishing of existing Lighting Pole [6.02] | 17,002.05 | 17,002.05 | A1090 | RO | DW |
| JDH4-02-007-CN-3020 |  | Relocating of existing Lighting Pole [Road 02 ](Completed) | 15d | 2026-01-15 A | 2026-02-01 A | JDH4-02-007-CN-1250 SS, JDH4-02-007-CN-1250 FF | 100% |  |  | Excavator [75 h]; Truck [225 h]; Labor [150 h]; Driver [150 h]; Eq. Operator [150 h]; Electrician [150 h]; Relocating of existing Lighting Pole [6.3] | 14,036.17 | 5,189.58 | A3770 | RO | DW |
| JDH4-02-007-CN-3020R |  | Relocating of existing Lighting Pole [Road 02 ] | 16d | 2026-02-02 A | 2026-10-03 A | JDH4-02-007-CN-1250 SS, JDH4-02-007-CN-1250 FF, JDH4-02-007-CN-3020, JDH4-02-007-CN-1680 | 100% | 2026-03-28 | 2026-04-14 | Excavator [60 h]; Truck [172.5 h]; Labor [112.5 h]; Driver [112.5 h]; Eq. Operator [112.5 h]; Electrician [112.5 h]; Relocating of existing Lighting Pole [11.7] | 27,536.54 |  |  |  | DW |
| JDH4-02-007-CN-1250R |  | Demolishing of existing Lighting Pole [Demolition Works ] | 14d | 2026-02-04 A | 2026-02-10 A | JDH4-02-007-CN-1340, JDH4-02-007-CN-1250, JDH4-02-007-CN-1680 | 100% | 2026-04-16 | 2026-05-02 | Excavator [105 h]; Loader [52.5 h]; Truck [630 h]; Labor [525 h]; Driver [315 h]; Eq. Operator [105 h]; Demolishing of existing Lighting Pole [0.98] | 3,812.75 |  |  |  | DW |
| JDH4-02-007-CN-3040 |  | Relocating of existing Lighting Pole [Road 04-R ] | 16d | 2026-02-15 A | 2026-08-19 A | JDH4-02-007-CN-3030, JDH4-02-007-CN-1620, JDH4-02-007-CN-1700, JDH4-02-007-CN-1660 | 100% | 2026-05-19 | 2026-06-10 | Excavator [80 h]; Truck [160 h]; Labor [160 h]; Driver [160 h]; Eq. Operator [160 h]; Electrician [160 h]; Relocating of existing Lighting Pole [5.36] | 12,615.03 |  | A3790 | RO | DW |
| JDH4-02-007-CN-3030 |  | Relocating of existing Lighting Pole [Road 08 ] | 16d | 2026-02-16 A | 2026-08-27 A | JDH4-02-007-CN-3020, JDH4-02-007-CN-1700, JDH4-02-007-CN-1620, JDH4-02-007-CN-3020R | 100% | 2026-04-30 | 2026-05-19 | Excavator [75 h]; Truck [225 h]; Labor [150 h]; Driver [150 h]; Eq. Operator [150 h]; Electrician [150 h]; Relocating of existing Lighting Pole [2.01] | 4,730.64 |  | A3780 | RO | DW |
| JDH4-02-007-CN-3050 |  | Relocating of existing Lighting Pole [Road 10 ] | 18d | 2026-02-18 A | 2026-10-04 A | JDH4-02-007-CN-3040, JDH4-02-007-CN-1170 | 100% | 2026-06-10 | 2026-07-01 | Excavator [80 h]; Truck [160 h]; Labor [160 h]; Driver [160 h]; Eq. Operator [160 h]; Electrician [160 h]; Relocating of existing Lighting Pole [4.02] | 9,461.27 |  | A3800 | RO | DW |
|  | 2 | **Plots** |  | 2025-12-11 | 2026-07-06 |  |  |  |  |  |  |  |  |  |  |
|  | 1 | **Excavation** |  | 2026-02-03 | 2026-07-02 |  |  |  |  |  |  |  |  |  |  |
| JDH4-02-007-CN-1760 |  | Plots excavation [Plots ] | 8d | 2026-02-03 A | 2026-07-02 A | JDH4-02-007-MB-1020, JDH4-02-007-PA-1000, JDH4-02-007-MB-1040, JDH4-02-007-EN-1720, JDH4-02-007-EN-1760 | 100% | 2026-03-23 | 2026-03-31 | Excavator [420 h]; Loader [210 h]; Water Tanker [420 h]; Grider [420 h]; Truck [420 h]; Road Roller [420 h]; Labor [2100 h]; Driver [840 h]; Eq. Operator [210 h]; Plots excavation [10720] | 282,577.06 |  | A1540 | RO | PL |
|  | 2 | **Backfilling** |  | 2025-12-11 | 2026-07-06 |  |  |  |  |  |  |  |  |  |  |
| JDH4-02-007-CN-1820 |  | Plots backfilling Stage 1 [Plots ] | 36d | 2025-12-11 A | 2026-01-21 A | JDH4-02-007-MB-1020, JDH4-02-007-TP-1000, JDH4-02-007-PA-1000, JDH4-02-007-MB-1040, JDH4-02-007-EN-1760, JDH4-02-007-EN-1550, JDH4-02-007-EN-1540, JDH4-02-007-EN-1530 | 100% |  |  | Loader [200 h]; Bulldozer [300 h]; Water Tanker [400 h]; Grider [400 h]; Truck [800 h]; Road Roller [400 h]; Driver [1200 h]; Eq. Operator [100 h]; Plots backfilling [43071.4] | 1,013,707.62 | 1,013,707.62 | A1630 | RO | PL |
| JDH4-02-007-CN-1830 |  | Plots backfilling Stage 2 [Plots ](Completed) | 9d | 2026-01-22 A | 2026-02-01 A | JDH4-02-007-EN-1520, JDH4-02-007-EN-1500, JDH4-02-007-EN-1510 | 100% |  |  | Loader [200 h]; Bulldozer [300 h]; Water Tanker [400 h]; Grider [400 h]; Truck [800 h]; Road Roller [400 h]; Driver [1200 h]; Eq. Operator [100 h]; Plots backfilling [30149.7] | 709,608.44 | 496,711.78 | A1650 | RO | PL |
| JDH4-02-007-CN-1840 |  | Plots backfilling Stage 3 [Plots ](Completed) | 3d | 2026-01-29 A | 2026-02-01 A | JDH4-02-007-CN-1830 SS, JDH4-02-007-CN-1830 FF | 100% |  |  | Loader [200 h]; Bulldozer [300 h]; Water Tanker [400 h]; Grider [400 h]; Truck [1600 h]; Road Roller [400 h]; Driver [1200 h]; Eq. Operator [100 h]; Plots backfilling [8614.2] | 202,739.5 | 202,739.5 | A1670 | RO | PL |
| JDH4-02-007-CN-1830R |  | Plots backfilling Stage 2 [Plots ] | 15d | 2026-02-02 A | 2026-04-12 A | JDH4-02-007-EN-1520, JDH4-02-007-EN-1500, JDH4-02-007-EN-1510, JDH4-02-007-CN-1820 | 100% | 2026-02-11 | 2026-03-01 | Loader [150 h]; Bulldozer [225 h]; Water Tanker [300 h]; Grider [300 h]; Truck [600 h]; Road Roller [300 h]; Driver [900 h]; Eq. Operator [75 h]; Plots backfilling [12921.3] | 304,109.26 | 304,109.26 |  |  | PL |
| JDH4-02-007-CN-1840R |  | Plots backfilling Stage 3 [Plots ] | 10d | 2026-02-02 A | 2026-05-02 A | JDH4-02-007-CN-1830 SS, JDH4-02-007-CN-1840, JDH4-02-007-CN-1830R | 100% | 2026-03-02 | 2026-03-12 | Loader [150 h]; Bulldozer [225 h]; Water Tanker [300 h]; Grider [300 h]; Truck [1200 h]; Road Roller [300 h]; Driver [900 h]; Eq. Operator [75 h]; Plots backfilling [34456.8] | 810,958.02 | 810,958.02 |  |  | PL |
| JDH4-02-007-CN-1850 |  | Plots backfilling Stage 4 [Plots ] | 13d | 2026-05-03 A | 2026-07-06 A | JDH4-02-007-CN-1840R | 100% | 2026-05-20 | 2026-06-07 | Loader [220 h]; Bulldozer [330 h]; Water Tanker [440 h]; Grider [440 h]; Truck [1760 h]; Road Roller [440 h]; Driver [1320 h]; Eq. Operator [110 h]; Plots backfilling [43071.4] | 1,013,707.62 |  | A1690 | RO | PL |
|  | 3 | **Roads** |  | 2025-12-04 | 2026-11-03 |  |  |  |  |  |  |  |  |  |  |
|  | 6 | **Road 04-R** |  | 2026-01-03 | 2026-09-26 |  |  |  |  |  |  |  |  |  |  |
|  | 7 | **Box Culvert** |  | 2026-01-17 | 2026-04-20 |  |  |  |  |  |  |  |  |  |  |
| JDH4-02-007-CN-5580 |  | Excavation For Box Culvert [Road 04-R ] | 9d | 2026-01-17 A | 2026-01-26 A | JDH4-02-007-PA-1000, JDH4-02-007-CN-1480, JDH4-02-007-EN-1780 | 100% |  |  | Excavator [210 h]; Truck [420 h]; Compactor [210 h]; Driver [210 h]; Eq. Operator [210 h]; Excavation For Box Culvert [1683.71] | 47,552.35 | 47,552.35 | A9020 | STO | BC |
| JDH4-02-007-CN-5590 |  | Backfilling For Box Culvert [Road 04-R ] | 3d | 2026-01-29 A | 2026-02-01 A | JDH4-02-007-CN-5580 | 100% |  |  | Loader [70 h]; Bulldozer [105 h]; Water Tanker [140 h]; Grider [140 h]; Truck [560 h]; Road Roller [140 h]; Driver [420 h]; Eq. Operator [140 h]; Backfilling For Box Culvert [812.04] | 30,578.83 | 30,578.83 | A9040 | STO | BC |
| JDH4-02-007-CN-5600 |  | Plain Concrete for box culvert [Road 04-R ] | 1d | 2026-02-01 A | 2026-02-01 A | JDH4-02-007-CN-5590, JDH4-02-007-EN-1580, JDH4-02-007-EN-1570, JDH4-02-007-EN-1740, JDH4-02-007-EN-1780 | 100% |  |  | Labor [300 h]; Mason [60 h]; Plain Concrete for box culvert [34.84] | 19,679.44 | 19,679.44 | A9060 | STO | BC |
| JDH4-02-007-CN-5610 |  | Steel Reinforcement for box culverts [Road 04-R ](Completed) | 1d | 2026-02-01 A | 2026-02-01 A | JDH4-02-007-CN-5600 | 100% |  |  | Labor [350 h]; Steel Fixer [70 h]; Steel Reinforcement for box culverts [9] | 33,891.12 | 33,891.12 | A9080 | STO | BC |
| JDH4-02-007-CN-5610R |  | Steel Reinforcement for box culverts [Road 04-R ] | 12d | 2026-02-02 A | 2026-04-19 A | JDH4-02-007-CN-5600, JDH4-02-007-CN-5610, JDH4-02-007-CN-1840R, JDH4-02-007-CN-1850, JDH4-02-007-CN-1680, JDH4-02-007-CN-1250R, JDH4-02-007-CN-1170 | 100% | 2026-04-13 | 2026-04-26 | Labor [262.5 h]; Steel Fixer [52.5 h]; Steel Reinforcement for box culverts [36] | 135,564.48 | 135,564.48 |  |  | BC |
| JDH4-02-007-CN-5620 |  | Reinforced Concrete for box culvert [Road 04-R ] | 18d | 2026-02-17 A | 2026-04-20 A | JDH4-02-007-CN-5610, JDH4-02-007-CN-5610R | 100% | 2026-04-23 | 2026-05-14 | Truck [220 h]; Driver [110 h]; Carpenter [110 h]; Steel Fixer [110 h]; Mason [110 h]; Reinforced Concrete for box culvert [363.14] | 232,469.74 |  | A9100 | STO | BC |

| ID | WBS | Activity | Duration | Start | Finish | Predecessors | Complete | Planned start | Planned finish | Resources | Cost | Actual cost | Old Activity ID | JDH4-02-007 | Construction |
| --- | --- | --- | --- | --- | --- | --- | --- | --- | --- | --- | --- | --- | --- | --- | --- |
|  | 6 | **Road Works + Roundabout** |  | 2026-01-03 | 2026-09-26 |  |  |  |  |  |  |  |  |  |  |
|  | 1 | **Eartworks & Site grading** |  | 2026-01-03 | 2026-06-08 |  |  |  |  |  |  |  |  |  |  |
| JDH4-02-007-CN-1810 |  | Road backfilling [Road 04-R ](Completed) | 26d | 2026-01-03 A | 2026-02-01 A | JDH4-02-007-CN-5610 | 100% |  |  | Loader [420 h]; Bulldozer [630 h]; Water Tanker [840 h]; Grider [840 h]; Truck [3360 h]; Road Roller [840 h]; Driver [2520 h]; Eq. Operator [210 h]; Road backfilling [23433.6] | 551,521.49 | 551,521.49 | A1600 | RO | RD |
| JDH4-02-007-CN-1750 |  | Road excavation [Road 04-R ](Completed) | 8d | 2026-01-24 A | 2026-02-01 A | JDH4-02-007-CN-5580, JDH4-02-007-PA-1000, JDH4-02-007-EN-1320, JDH4-02-007-EN-1330, JDH4-02-007-EN-1340, JDH4-02-007-EN-1350, JDH4-02-007-EN-1360, JDH4-02-007-EN-1370, JDH4-02-007-EN-1380, JDH4-02-007-EN-1390, JDH4-02-007-EN-1400, JDH4-02-007-CN-1560, JDH4-02-007-EN-1790, JDH4-02-007-EN-1770 | 100% |  |  | Excavator [210 h]; Loader [105 h]; Water Tanker [210 h]; Grider [210 h]; Truck [420 h]; Road Roller [210 h]; Labor [840 h]; Driver [420 h]; Eq. Operator [210 h]; Road excavation [531.6] | 14,012.87 | 14,012.87 | A1520 | RO | RD |
| JDH4-02-007-CN-1810R |  | Road backfilling [Road 04-R ] | 16d | 2026-02-02 A | 2026-05-14 A | JDH4-02-007-CN-1810, JDH4-02-007-CN-1750R SS+5d | 100% | 2026-05-24 | 2026-06-14 | Loader [315 h]; Bulldozer [472.5 h]; Water Tanker [630 h]; Grider [630 h]; Truck [2520 h]; Road Roller [630 h]; Driver [1890 h]; Eq. Operator [157.5 h]; Road backfilling [35150.4] | 827,282.24 | 827,282.24 |  |  | RD |
| JDH4-02-007-CN-1750R |  | Road excavation [Road 04-R ] | 16d | 2026-02-03 A | 2026-05-14 A | JDH4-02-007-CN-5580, JDH4-02-007-PA-1000, JDH4-02-007-EN-1320, JDH4-02-007-EN-1330, JDH4-02-007-EN-1340, JDH4-02-007-EN-1350, JDH4-02-007-EN-1360, JDH4-02-007-EN-1370, JDH4-02-007-EN-1380, JDH4-02-007-EN-1390, JDH4-02-007-EN-1400, JDH4-02-007-CN-1560, JDH4-02-007-EN-1790, JDH4-02-007-EN-1770, JDH4-02-007-CN-1760, JDH4-02-007-CN-1750, JDH4-02-007-CN-1810, JDH4-02-007-CN-1850, JDH4-02-007-CN-5620 | 100% | 2026-05-18 | 2026-06-08 | Excavator [157.5 h]; Loader [82.5 h]; Water Tanker [157.5 h]; Grider [157.5 h]; Truck [315 h]; Road Roller [157.5 h]; Labor [630 h]; Driver [315 h]; Eq. Operator [157.5 h]; Road excavation [797.4] | 21,019.3 | 21,019.3 |  |  | RD |
| JDH4-02-007-CN-1930 |  | Subgrade [Road 04-R ] | 13d | 2026-04-30 A | 2026-06-08 A | JDH4-02-007-CN-1810, JDH4-02-007-CN-5620, JDH4-02-007-CN-3050, JDH4-02-007-CN-1810R | 100% | 2026-08-16 | 2026-08-31 | Loader [32.5 h]; Water Tanker [65 h]; Grider [65 h]; Truck [65 h]; Road Roller [65 h]; Labor [390 h]; Driver [130 h]; Eq. Operator [130 h]; Subgrade [4103.75] | 139,080.6 |  | A1810 | RO | RD |
|  | 2 | **Asphalt Works** |  | 2026-06-11 | 2026-06-18 |  |  |  |  |  |  |  |  |  |  |
| JDH4-02-007-CN-1990 |  | Aggregate base course [Road 04-R ] | 16d | 2026-06-11 A | 2026-06-14 A | JDH4-02-007-CN-1930, JDH4-02-007-PR-1390, JDH4-02-007-MS-1040 | 100% | 2026-09-07 | 2026-09-27 | Loader [31.5 h]; Water Tanker [63 h]; Grider [63 h]; Truck [63 h]; Road Roller [63 h]; Labor [63 h]; Driver [126 h]; Eq. Operator [210 h]; Aggregate base course [2735.61] | 141,644.69 |  | A1900 | RO | RD |
| JDH4-02-007-CN-2040 |  | Prime Coat (MC1) [Road 04-R ] | 14d | 2026-06-14 A | 2026-06-17 A | JDH4-02-007-CN-1990 | 100% | 2026-09-26 | 2026-10-12 | Water Tanker [70 h]; Grider [70 h]; Truck [70 h]; Road Roller [70 h]; Asphalte Paver [70 h]; Labor [70 h]; Driver [140 h]; Eq. Operator [140 h]; Bituminous base course (Grading I - Class A), including Prime Coat (MC1) and tack coat (RC2) (if any) [135.34] | 78,995.31 |  | A1980 | RO | RD |
| JDH4-02-007-CN-2090 |  | Bituminous base course [Road 04-R ] | 11d | 2026-06-17 A | 2026-06-18 A | JDH4-02-007-CN-2040, JDH4-02-007-EN-1750, JDH4-02-007-EN-1790, JDH4-02-007-PR-1440 | 100% | 2026-10-12 | 2026-10-25 | Water Tanker [84 h]; Truck [420 h]; Road Roller [420 h]; Asphalte Paver [84 h]; Labor [756 h]; Driver [504 h]; Eq. Operator [210 h]; Bituminous base course (Grading I - Class A), including Prime Coat (MC1) and tack coat (RC2) (if any) [1218.06] | 710,957.75 |  | A2040 | RO | RD |
|  | 8 | **Finishing Works** |  | 2026-06-17 | 2026-09-26 |  |  |  |  |  |  |  |  |  |  |
|  | 1 | **Asphalt Wearing Course** |  | 2026-09-12 | 2026-09-15 |  |  |  |  |  |  |  |  |  |  |
| JDH4-02-007-CN-2140 |  | Tack Coat (RC2) [Road 04-R ] | 12d | 2026-09-12 A | 2026-09-15 A | JDH4-02-007-CN-2090, JDH4-02-007-CN-3300 SS, JDH4-02-007-MS-1070 | 100% | 2027-03-17 | 2027-03-31 | Water Tanker [25 h]; Grider [25 h]; Truck [25 h]; Road Roller [25 h]; Asphalte Paver [25 h]; Labor [25 h]; Driver [50 h]; Eq. Operator [50 h]; Bituminous concrete wearing course, (Grading I - Class A), including tack coat (RC2). [68.34] | 41,818.82 |  | A2120 | RO | RD |
| JDH4-02-007-CN-2190 |  | Bituminous concrete wearing course [Road 04-R ] | 16d | 2026-09-12 A | 2026-09-14 A | JDH4-02-007-CN-2140, JDH4-02-007-PR-1410, JDH4-02-007-MS-1060 | 100% | 2027-03-31 | 2027-04-19 | Water Tanker [32.8 h]; Truck [164.8 h]; Road Roller [164.8 h]; Asphalte Paver [32.8 h]; Labor [297 h]; Driver [198 h]; Eq. Operator [110 h]; Bituminous concrete wearing course, (Grading I - Class A), including tack coat (RC2). [615.06] | 376,369.36 |  | A2180 | RO | RD |
|  | 3 | **Precast Concrete Curb** |  | 2026-07-30 | 2026-08-01 |  |  |  |  |  |  |  |  |  |  |
| JDH4-02-007-CN-2240 |  | Installation of Precast Concrete curb [Road 04-R ] | 5d | 2026-07-30 A | 2026-08-01 A | JDH4-02-007-CN-2190 | 100% | 2027-04-24 | 2027-04-28 | Labor [600 h]; Skilled Labor [150 h]; Precast Concrete curb, Type (K4) [4413.96] | 260,761.75 |  | A2280 | RO | RD |
|  | 4 | **Precast Interlocking block pavers** |  | 2026-08-02 | 2026-08-04 |  |  |  |  |  |  |  |  |  |  |
| JDH4-02-007-CN-2290 |  | Installation of Interlocking block pavers for sidewalk/footpath [Road 04-R ] | 15d | 2026-08-02 A | 2026-08-04 A | JDH4-02-007-CN-2190, JDH4-02-007-CN-2240 | 100% | 2027-04-29 | 2027-05-20 | Labor [2240 h]; Mason [140 h]; Interlocking block pavers for sidewalk/footpath [3512.14] | 247,979.91 |  | A2350 | RO | RD |
|  | 5 | **Pavement Markings** |  | 2026-09-24 | 2026-09-26 |  |  |  |  |  |  |  |  |  |  |
| JDH4-02-007-CN-2340 |  | Pavement markings [Road 04-R ] | 9d | 2026-09-24 A | 2026-09-26 A | JDH4-02-007-CN-2190 | 100% | 2027-01-19 | 2027-01-30 | Labor [90 h]; Skilled Labor [90 h]; Solar powered lighting cateyes pavement markers [1611.35] | 70,108.71 |  | A2470 | RO | RD |
|  | 6 | **Traffic Signage** |  | 2026-07-30 | 2026-09-11 |  |  |  |  |  |  |  |  |  |  |
| JDH4-02-007-CN-2390 |  | Installation of Traffic Signs [Road 04-R ] | 15d | 2026-07-30 A | 2026-09-11 A | JDH4-02-007-CN-2190, JDH4-02-007-SB-1110 | 100% | 2027-04-24 | 2027-05-10 | Labor [150 h]; Skilled Labor [150 h]; Traffic signs, ground mounted, Sheet Alumenium, (breakaway) Double post with all accessories according to the drawings and specifications. [30.82] | 119,121.91 |  | A2570 | RO | RD |
|  | 7 | **Guardrail** |  | 2026-06-17 | 2026-06-25 |  |  |  |  |  |  |  |  |  |  |
| JDH4-02-007-CN-2400 |  | Installation of Guard rails [Road 04-R ] | 21d | 2026-06-17 A | 2026-06-25 A | JDH4-02-007-PR-1320, JDH4-02-007-PR-1340, JDH4-02-007-PR-1370, JDH4-02-007-CN-2190 SS | 100% | 2027-03-17 | 2027-04-11 | Labor [100 h]; Skilled Labor [100 h]; Steel Fixer [100 h]; Guard rails [167.5] | 55,190.75 |  | A2600 | RO | RD |

| ID | WBS | Activity | Duration | Start | Finish | Predecessors | Complete | Planned start | Planned finish | Resources | Cost | Actual cost | Old Activity ID | JDH4-02-007 | Construction |
| --- | --- | --- | --- | --- | --- | --- | --- | --- | --- | --- | --- | --- | --- | --- | --- |
|  | 1 | **Storm Water Drainage** |  | 2026-01-07 | 2026-07-22 |  |  |  |  |  |  |  |  |  |  |
|  | 1 | **Pipe Works** |  | 2026-01-07 | 2026-04-20 |  |  |  |  |  |  |  |  |  |  |
| JDH4-02-007-CN-5370 |  | Excavation and Compaction (FDT) [Road 04-R ](Completed) | 22d | 2026-01-07 A | 2026-02-01 A | JDH4-02-007-EN-1530, JDH4-02-007-EN-1540, JDH4-02-007-EN-1550, JDH4-02-007-CN-1560, JDH4-02-007-EN-1710, JDH4-02-007-EN-1700, JDH4-02-007-EN-1690, JDH4-02-007-EN-1680, JDH4-02-007-EN-1420, JDH4-02-007-EN-1430, JDH4-02-007-EN-1620, JDH4-02-007-EN-1630 | 100% |  |  | Excavator [270 h]; Water Tanker [270 h]; Truck [1080 h]; Labor [1080 h]; Driver [810 h]; Eq. Operator [180 h]; Depth: 0.0m - 1.5m [153.3] | 13,055.44 | 13,055.44 | A8740 | STO | SD |
| JDH4-02-007-CN-5420 |  | Sand Bedding [Road 04-R ](Completed) | 21d | 2026-01-08 A | 2026-02-01 A | JDH4-02-007-CN-5370 | 100% |  |  | Loader [45 h]; Truck [180 h]; Labor [90 h]; Driver [90 h]; Eq. Operator [90 h]; Depth > 2 m [153.3] | 6,527.73 | 6,527.73 | A8800 | STO | SD |
| JDH4-02-007-CN-5470 |  | Installation of GRP Pipe [Road 04-R ](Completed) | 20d | 2026-01-10 A | 2026-02-01 A | JDH4-02-007-CN-5420 | 100% |  |  | Excavator [85 h]; Crane [170 h]; Labor [510 h]; Eq. Operator [170 h]; Plumber [170 h]; Pipe-Laying Worker [170 h]; Depth: 1.50m - 2.0m [153.3] | 91,388.14 | 91,388.14 | A8860 | STO | SD |
| JDH4-02-007-CN-5520 |  | Sand Cover & Warning Tape [Road 04-R ] | 7d | 2026-01-29 A | 2026-04-19 A | JDH4-02-007-CN-5470R | 100% | 2026-10-25 | 2026-11-01 | Labor [70 h]; Skilled Labor [70 h]; Depth > 2.5m [437.51] | 18,629.79 |  | A8920 | STO | SD |
| JDH4-02-007-CN-5570 |  | Backfilling & Compaction [Road 04-R ] | 21d | 2026-02-01 A | 2026-04-20 A | JDH4-02-007-CN-5520 | 100% | 2026-11-02 | 2026-11-25 | Bulldozer [157.5 h]; Truck [210 h]; Compactor [210 h]; Labor [1050 h]; Driver [210 h]; Eq. Operator [210 h]; Depth: 0.0m - 1.5m [437.51] | 37,259.53 |  | A8980 | STO | SD |
| JDH4-02-007-CN-5370R |  | Excavation and Compaction (FDT) [Road 04-R ] | 18d | 2026-02-03 A | 2026-04-09 A | JDH4-02-007-CN-5370, JDH4-02-007-CN-1810R, JDH4-02-007-CN-2090 | 100% | 2026-09-02 | 2026-09-22 | Excavator [202.5 h]; Water Tanker [202.5 h]; Truck [810 h]; Labor [810 h]; Driver [607.5 h]; Eq. Operator [135 h]; Depth: 0.0m - 1.5m [284.7] | 24,245.82 | 24,245.82 |  |  | SD |
| JDH4-02-007-CN-5420R |  | Sand Bedding [Road 04-R ] | 9d | 2026-02-03 A | 2026-04-11 A | JDH4-02-007-CN-5420, JDH4-02-007-CN-5370R | 100% | 2026-09-24 | 2026-10-04 | Loader [37.5 h]; Truck [135 h]; Labor [67.5 h]; Driver [67.5 h]; Eq. Operator [67.5 h]; Depth > 2 m [284.7] | 12,122.92 | 12,122.92 |  |  | SD |
| JDH4-02-007-CN-5470R |  | Installation of GRP Pipe [Road 04-R ] | 17d | 2026-02-03 A | 2026-04-18 A | JDH4-02-007-CN-5470, JDH4-02-007-CN-5370R, JDH4-02-007-CN-5420R, JDH4-02-007-MS-1070 | 100% | 2026-10-05 | 2026-10-24 | Excavator [67.5 h]; Crane [127.5 h]; Labor [382.5 h]; Eq. Operator [127.5 h]; Plumber [127.5 h]; Pipe-Laying Worker [127.5 h]; Depth: 1.50m - 2.0m [284.7] | 169,720.83 | 169,720.83 |  |  | SD |
|  | 5 | **Pipe Encasement** |  | 2026-01-29 | 2026-04-19 |  |  |  |  |  |  |  |  |  |  |
| JDH4-02-007-CN-5840 |  | Pipe Encasement Works [Road 04-R ] | 5d | 2026-01-29 A | 2026-04-19 A | JDH4-02-007-CN-5570 | 100% | 2027-01-13 | 2027-01-18 | Labor [200 h]; Carpenter [50 h]; Mason [50 h]; Pipe encasement dia 700 mm [27.47] | 13,406.24 |  | A9650 | STO | SD |
|  | 2 | **Manholes** |  | 2026-02-01 | 2026-04-04 |  |  |  |  |  |  |  |  |  |  |
| JDH4-02-007-CN-5670 |  | Installation of Precast Manhole Ring [Road 04-R ] | 6d | 2026-02-01 A | 2026-04-04 A | JDH4-02-007-CN-5840, JDH4-02-007-PR-1710, JDH4-02-007-PR-1710R, JDH4-02-007-MS-1120 | 100% | 2026-12-02 | 2026-12-08 | Truck [90 h]; Compactor [60 h]; Skilled Labor [60 h]; Driver [60 h]; Eq. Operator [60 h]; Steel Fixer [60 h]; Mason [60 h]; Plumber [60 h]; MH depth > 2.5 m [1.17]; MH depth 2.0 - 2.5m [1.17]; MH depth 2.51 - 3.0m [1.17]; MH depth 3.01 - 3.5m [1.17] | 130,842.92 |  | A9330 | STO | SD |
|  | 7 | **Precast Acces Openinig** |  | 2026-07-07 | 2026-07-22 |  |  |  |  |  |  |  |  |  |  |
| JDH4-02-007-CN-5720 |  | Installation of Precast Access Opening [Road 04-R ] | 4d | 2026-07-07 A | 2026-07-22 A | JDH4-02-007-CN-5670 | 100% | 2026-12-02 | 2026-12-06 | Labor [80 h]; Skilled Labor [40 h]; Cover with dimensions1000*1000 mm at variable depth including frame [2.68] | 7,569.02 |  | A9410 | STO | SD |
|  | 3 | **Catch Basins** |  | 2026-04-28 | 2026-05-09 |  |  |  |  |  |  |  |  |  |  |
| JDH4-02-007-CN-5760 |  | Construction of Catch basins [Road 04-R ] | 5d | 2026-04-28 A | 2026-05-09 A | JDH4-02-007-CN-5720, JDH4-02-007-PR-1830 | 100% | 2026-12-16 | 2026-12-22 | Truck [50 h]; Compactor [50 h]; Skilled Labor [50 h]; Driver [50 h]; Eq. Operator [50 h]; Steel Fixer [50 h]; Mason [50 h]; Plumber [50 h]; Double Catch basin [6.7] | 40,998.84 |  | A9490 | STO | SD |
|  | 4 | **Concrete Outfalls** |  | 2026-06-17 | 2026-06-29 |  |  |  |  |  |  |  |  |  |  |
| JDH4-02-007-CN-5790 |  | Construction of Concrete outfall structure [Road 04-R ] | 8d | 2026-06-17 A | 2026-06-29 A | JDH4-02-007-CN-5760 SS | 100% | 2027-01-17 | 2027-01-26 | Skilled Labor [80 h]; Carpenter [80 h]; Steel Fixer [80 h]; Mason [80 h]; Concrete outfall structure [1.34] | 50,460.11 |  | A9540 | STO | SD |
|  | 2 | **Sewerage Network** |  | 2026-01-29 | 2026-04-20 |  |  |  |  |  |  |  |  |  |  |
|  | 1 | **Pipe Works** |  | 2026-01-29 | 2026-04-20 |  |  |  |  |  |  |  |  |  |  |
| JDH4-02-007-CN-4820 |  | Excavation & Compaction (FDT) [Road 04-R ](Completed) | 3d | 2026-01-29 A | 2026-02-01 A | JDH4-02-007-CN-5370 | 100% |  |  | Excavator [180 h]; Water Tanker [180 h]; Truck [720 h]; Labor [720 h]; Driver [180 h]; Eq. Operator [180 h]; Depth : 0.0m - 1.5m [10.35] | 759.81 | 759.81 | A7540 | SEW | SW |
| JDH4-02-007-CN-4820R |  | Excavation & Compaction (FDT) [Road 04-R ] | 7d | 2026-03-26 A | 2026-04-12 A | JDH4-02-007-EN-1500, JDH4-02-007-EN-1510, JDH4-02-007-EN-1520, JDH4-02-007-CN-1640, JDH4-02-007-CN-1630, JDH4-02-007-CN-4820, JDH4-02-007-CN-1640 FF, JDH4-02-007-CN-1810R, JDH4-02-007-CN-1930 SS | 100% | 2026-07-22 | 2026-07-30 | Excavator [135 h]; Water Tanker [135 h]; Truck [540 h]; Labor [540 h]; Driver [135 h]; Eq. Operator [135 h]; Depth : 0.0m - 1.5m [196.65] | 14,436.45 | 14,436.45 |  |  | SW |
| JDH4-02-007-CN-4890 |  | Sand Bedding [Road 04-R ] | 7d | 2026-03-31 A | 2026-04-13 A | JDH4-02-007-CN-4820, JDH4-02-007-CN-4820R | 100% | 2026-07-30 | 2026-08-08 | Loader [60 h]; Truck [180 h]; Labor [120 h]; Driver [120 h]; Eq. Operator [120 h]; Depth : 1.51m - 2.5m [207.03] | 7,599.22 |  | A7620 | SEW | SW |
| JDH4-02-007-CN-4960 |  | Installation of GRP Pipe [Road 04-R ] | 9d | 2026-03-31 A | 2026-04-18 A | JDH4-02-007-CN-4890, JDH4-02-007-PR-1620, JDH4-02-007-CN-1660, JDH4-02-007-PR-1620R | 100% | 2026-08-08 | 2026-08-18 | Loader [75 h]; Truck [225 h]; Labor [150 h]; Driver [150 h]; Eq. Operator [150 h]; Depth > 2.5 m [207.03] | 75,992.31 |  | A7700 | SEW | SW |
| JDH4-02-007-CN-5030 |  | Gravity Test [Road 04-R ] | 3d | 2026-04-02 A | 2026-04-19 A | JDH4-02-007-CN-4960 | 100% | 2026-08-18 | 2026-08-22 | Excavator [40 h]; Crane [80 h]; Labor [240 h]; Eq. Operator [80 h]; Plumber [80 h]; Pipe-Laying Worker [80 h]; Depth: 0.0m - 1.5m [207.03] | 30,396.93 |  | A7780 | SEW | SW |
| JDH4-02-007-CN-5100 |  | Sand Cover & Warning Tape [Road 04-R ] | 4d | 2026-04-04 A | 2026-04-20 A | JDH4-02-007-CN-5030 SS | 100% | 2026-08-18 | 2026-08-23 | Labor [40 h]; Skilled Labor [40 h]; Depth: 1.51m - 2.5m [207.03] | 7,599.22 |  | A7860 | SEW | SW |
| JDH4-02-007-CN-5170 |  | Backfilling & Compaction [Road 04-R ] | 6d | 2026-04-06 A | 2026-04-20 A | JDH4-02-007-CN-5100 SS | 100% | 2026-08-18 | 2026-08-25 | Bulldozer [82.5 h]; Truck [110 h]; Compactor [110 h]; Labor [550 h]; Driver [110 h]; Eq. Operator [110 h]; Depth > 2.5 m [207.03] | 15,198.47 |  | A7940 | SEW | SW |

| ID | WBS | Activity | Duration | Start | Finish | Predecessors | Complete | Planned start | Planned finish | Resources | Cost | Actual cost | Old Activity ID | JDH4-02-007 | Construction |
| --- | --- | --- | --- | --- | --- | --- | --- | --- | --- | --- | --- | --- | --- | --- | --- |
|  | 5 | **Pipe Encasement** |  | 2026-04-04 | 2026-04-20 |  |  |  |  |  |  |  |  |  |  |
| JDH4-02-007-CN-5310 |  | Pipe Encasement Works [Road 04-R ] | 7d | 2026-04-04 A | 2026-04-20 A | JDH4-02-007-CN-4960 SS | 100% | 2026-09-20 | 2026-09-29 | Labor [280 h]; Carpenter [70 h]; Mason [70 h]; Pipe encasement dia 250 mm [3.35] | 760.54 | 760.54 | A8250 | SEW | SW |
|  | 2 | **Manholes** |  | 2026-03-28 | 2026-04-05 |  |  |  |  |  |  |  |  |  |  |
| JDH4-02-007-CN-5240 |  | Installation of Manholes [Road 04-R ] | 7d | 2026-03-28 A | 2026-04-05 A | JDH4-02-007-CN-5310 SS, JDH4-02-007-PR-1650, JDH4-02-007-PR-1650R | 100% | 2026-08-08 | 2026-08-16 | Truck [70 h]; Compactor [70 h]; Skilled Labor [70 h]; Driver [70 h]; Eq. Operator [70 h]; Steel Fixer [70 h]; Mason [70 h]; Plumber [70 h]; MH depth 3.51 -4.5m with back drop [3.35] | 81,104.12 |  | A8130 | SEW | SW |
|  | 3 | **TSE Network** |  | 2026-03-25 | 2026-05-23 |  |  |  |  |  |  |  |  |  |  |
|  | 1 | **Pipe Works** |  | 2026-03-25 | 2026-04-20 |  |  |  |  |  |  |  |  |  |  |
| JDH4-02-007-CN-4040 |  | Excavation and Compaction (FDT) [Road 04-R ] | 12d | 2026-03-25 A | 2026-04-15 A | JDH4-02-007-CN-4820, JDH4-02-007-EN-1470, JDH4-02-007-EN-1480, JDH4-02-007-EN-1490, JDH4-02-007-CN-1620, JDH4-02-007-CN-1700, JDH4-02-007-CN-4820R SS, JDH4-02-007-CN-1930, JDH4-02-007-CN-2090, JDH4-02-007-CN-5170 | 100% | 2026-09-24 | 2026-10-08 | Excavator [85 h]; Water Tanker [64.6 h]; Truck [765 h]; Labor [1020 h]; Driver [765 h]; Eq. Operator [170 h]; Depth: 0.0m - 1.5m [424.78] | 15,169.19 |  | A6040 | TSE | TSE |
| JDH4-02-007-CN-4110 |  | Sand Bedding [Road 04-R ] | 9d | 2026-03-28 A | 2026-04-16 A | JDH4-02-007-CN-4040, JDH4-02-007-CN-5240 | 100% | 2026-10-08 | 2026-10-19 | Loader [45 h]; Truck [90 h]; Labor [90 h]; Driver [90 h]; Eq. Operator [90 h]; Depth: 1.51m - 2.5m [424.78] | 7,584.62 |  | A6120 | TSE | TSE |
| JDH4-02-007-CN-4180 |  | Installation of HDPE Pipe [Road 04-R ] | 12d | 2026-03-30 A | 2026-04-18 A | JDH4-02-007-CN-4110, JDH4-02-007-PR-1590, JDH4-02-007-PR-1590R | 100% | 2026-10-19 | 2026-11-02 | Excavator [80 h]; Crane [160 h]; Labor [480 h]; Eq. Operator [160 h]; Plumber [160 h]; Pipe-Laying Worker [160 h]; Depth > 2.5 m [424.78] | 75,846 |  | A6200 | TSE | TSE |
| JDH4-02-007-CN-4250 |  | Initial Pressure Test [Road 04-R ] | 3d | 2026-04-01 A | 2026-04-18 A | JDH4-02-007-CN-4180 | 100% | 2026-11-02 | 2026-11-05 | Labor [70 h]; Skilled Labor [70 h]; Depth: 0.0m - 1.5m [424.78] | 30,338.38 |  | A6280 | TSE | TSE |
| JDH4-02-007-CN-4320 |  | Sand Cover & Warning [Road 04-R ] | 7d | 2026-04-02 A | 2026-04-19 A | JDH4-02-007-CN-4250 | 100% | 2026-11-05 | 2026-11-14 | Labor [70 h]; Skilled Labor [70 h]; Depth > 1.5 m [424.78] | 7,584.62 |  | A6360 | TSE | TSE |
| JDH4-02-007-CN-4390 |  | Backfilling & Compaction [Road 04-R ] | 8d | 2026-04-04 A | 2026-04-20 A | JDH4-02-007-CN-4320 | 100% | 2026-11-14 | 2026-11-23 | Bulldozer [60 h]; Truck [120 h]; Compactor [36 h]; Labor [600 h]; Driver [120 h]; Eq. Operator [80 h]; Depth: 1.51m - 2.5m [424.78] | 15,169.19 |  | A6440 | TSE | TSE |
| JDH4-02-007-CN-4700 |  | Point of Connection [Road 04-R ] | 2d | 2026-04-06 A | 2026-04-20 A | JDH4-02-007-CN-4180, JDH4-02-007-CN-4390 | 100% | 2026-11-23 | 2026-11-25 | Labor [20 h]; Plumber [20 h]; Pipe-Laying Worker [20 h]; POC with dia 160 mm [1.34] | 8,311.08 |  | A7250 | TSE | TSE |
|  | 2 | **Pipe Encasement** |  | 2026-04-02 | 2026-04-19 |  |  |  |  |  |  |  |  |  |  |
| JDH4-02-007-CN-4460 |  | Encasement for Pipes [Road 04-R ] | 12d | 2026-04-02 A | 2026-04-19 A | JDH4-02-007-CN-4180, JDH4-02-007-CN-5240, JDH4-02-007-CN-4390, JDH4-02-007-CN-4700 | 100% | 2026-09-21 | 2026-10-05 | Labor [160 h]; Carpenter [40 h]; Mason [40 h]; Pipe encasement dia 400 mm [33.5] | 7,554.9 |  | A6600 | TSE | TSE |
|  | 3 | **Valves** |  | 2026-04-16 | 2026-05-23 |  |  |  |  |  |  |  |  |  |  |
| JDH4-02-007-CN-4530 |  | Installation of Gate Valves [Road 04-R ] | 7d | 2026-04-16 A | 2026-05-23 A | JDH4-02-007-CN-4460, JDH4-02-007-PR-1820 | 100% | 2026-11-18 | 2026-11-26 | Labor [50 h]; Skilled Labor [50 h]; Pipe-Laying Worker [50 h]; Gate valves dia (150) mm on pipe dia (160) mm . [3.35] | 18,673.56 |  | A6750 | TSE | TSE |
|  | 4 | **Potable Network** |  | 2026-03-23 | 2026-05-25 |  |  |  |  |  |  |  |  |  |  |
|  | 1 | **Pipe Works** |  | 2026-03-23 | 2026-05-25 |  |  |  |  |  |  |  |  |  |  |
| JDH4-02-007-CN-3360 |  | Excavation and Compaction (FDT) [Road 04-R ] | 12d | 2026-03-23 A | 2026-04-15 A | JDH4-02-007-EN-1440, JDH4-02-007-EN-1450, JDH4-02-007-EN-1460, JDH4-02-007-CN-4820, JDH4-02-007-CN-1400, JDH4-02-007-CN-1340, JDH4-02-007-CN-1430, JDH4-02-007-CN-4820R, JDH4-02-007-CN-5420R | 100% | 2026-10-15 | 2026-10-29 | Excavator [105 h]; Water Tanker [58.8 h]; Truck [693 h]; Labor [924 h]; Driver [693 h]; Eq. Operator [210 h]; Depth: 0.0m - 1.5m [385.25] | 12,402.74 |  | A4400 | POT | PW |
| JDH4-02-007-CN-3430 |  | Sand Bedding [Road 04-R ] | 8d | 2026-03-26 A | 2026-04-16 A | JDH4-02-007-CN-3360, JDH4-02-007-CN-3360 FF | 100% | 2026-10-29 | 2026-11-08 | Loader [40 h]; Truck [80 h]; Labor [80 h]; Driver [80 h]; Eq. Operator [80 h]; Depth: 1.51m - 2.5m [385.25] | 6,201.37 |  | A4480 | POT | PW |
| JDH4-02-007-CN-3500 |  | Installation of HDPE Pipe [Road 04-R ] | 11d | 2026-03-31 A | 2026-05-21 A | JDH4-02-007-CN-3430, JDH4-02-007-PR-1560, JDH4-02-007-CN-1430, JDH4-02-007-PR-1560R | 100% | 2026-11-08 | 2026-11-21 | Excavator [75 h]; Crane [150 h]; Labor [450 h]; Eq. Operator [150 h]; Plumber [150 h]; Pipe-Laying Worker [150 h]; Depth: > 2.5 [385.25] | 62,013.62 |  | A4560 | POT | PW |
| JDH4-02-007-CN-3570 |  | Initial Pressure Test [Road 04-R ] | 3d | 2026-04-02 A | 2026-05-23 A | JDH4-02-007-CN-3500 | 100% | 2026-11-21 | 2026-11-24 | Labor [60 h]; Skilled Labor [60 h]; Depth: 0.0m - 1.5m [385.25] | 24,805.44 |  | A4640 | POT | PW |
| JDH4-02-007-CN-3640 |  | Sand Cover & Warning Tape [Road 04-R ] | 6d | 2026-04-04 A | 2026-05-24 A | JDH4-02-007-CN-3570 | 100% | 2026-11-24 | 2026-12-01 | Labor [60 h]; Skilled Labor [60 h]; Depth: > 1.5m [385.25] | 6,201.37 |  | A4720 | POT | PW |
| JDH4-02-007-CN-3710 |  | Backfilling [Road 04-R ] | 7d | 2026-04-06 A | 2026-05-25 A | JDH4-02-007-CN-3640, JDH4-02-007-PR-3030 | 100% | 2026-12-21 | 2026-12-28 | Bulldozer [26.25 h]; Truck [70 h]; Compactor [21 h]; Labor [350 h]; Driver [70 h]; Eq. Operator [70 h]; Depth: 1.51m - 2.5m [385.25] | 12,402.74 |  | A4800 | POT | PW |

| ID | WBS | Activity | Duration | Start | Finish | Predecessors | Complete | Planned start | Planned finish | Resources | Cost | Actual cost | Old Activity ID | JDH4-02-007 | Construction |
| --- | --- | --- | --- | --- | --- | --- | --- | --- | --- | --- | --- | --- | --- | --- | --- |
|  | 2 | **Pipe Encasement** |  | 2026-04-04 | 2026-05-24 |  |  |  |  |  |  |  |  |  |  |
| JDH4-02-007-CN-3780 |  | Encasement for Pipes [Road 04-R ] | 5d | 2026-04-04 A | 2026-05-24 A | JDH4-02-007-CN-3500 | 100% | 2026-09-21 | 2026-09-27 | Labor [200 h]; Carpenter [50 h]; Mason [50 h]; Pipe encasement diameter 200 mm [46.9] | 9,796.16 |  | A4940 | POT | PW |
|  | 3 | **Valves** |  | 2026-04-15 | 2026-04-19 |  |  |  |  |  |  |  |  |  |  |
| JDH4-02-007-CN-3850 |  | Installation of Gate Valves [Road 04-R ] | 7d | 2026-04-15 A | 2026-04-19 A | JDH4-02-007-CN-3500, JDH4-02-007-CN-3780 | 100% | 2026-10-15 | 2026-10-24 | Labor [60 h]; Skilled Labor [60 h]; Pipe-Laying Worker [60 h]; Gate valves dia (250) mm on pipe dia (250) mm . [4.02] | 15,768.79 |  | A5080 | POT | PW |
|  | 4 | **Fire Hydrant** |  | 2026-04-29 | 2026-05-10 |  |  |  |  |  |  |  |  |  |  |
| JDH4-02-007-CN-3940 |  | Installation of 3-outlet fire hydrant [Road 04-R ] | 5d | 2026-04-29 A | 2026-05-10 A | JDH4-02-007-CN-3500, JDH4-02-007-CN-3850, JDH4-02-007-PR-2460, JDH4-02-007-CN-4530 | 100% | 2026-10-17 | 2026-10-22 | Labor [50 h]; Skilled Labor [50 h]; Pipe-Laying Worker [50 h]; 3-outlet fire hydrant [4.69] | 44,152.6 |  | A5320 | POT | PW |
|  | 5 | **Electrical Works** |  | 2026-06-07 | 2026-09-24 |  |  |  |  |  |  |  |  |  |  |
|  | 3 | **Street Lighting** |  | 2026-06-07 | 2026-09-24 |  |  |  |  |  |  |  |  |  |  |
| JDH4-02-007-CN-2830 |  | Installation of Road Crossing Ducts [Road 04-R ] | 13d | 2026-06-07 A | 2026-06-11 A | JDH4-02-007-EN-1420, JDH4-02-007-EN-1430, JDH4-02-007-EN-1640, JDH4-02-007-EN-1650, JDH4-02-007-CN-2820 | 100% | 2026-10-24 | 2026-11-07 | Truck [130 h]; Bobcat [130 h]; Compactor [130 h]; Labor [130 h]; Driver [130 h]; Eq. Operator [130 h]; Carpenter [130 h]; Steel Fixer [130 h]; Mason [130 h]; Electrician [130 h]; Road crossing ducts, 6 way (3 x 2 x100mm PVC) [48.91] | 17,941.62 |  | A3325 | STL | EW |
| JDH4-02-007-CN-2820 |  | Excavation for Low Voltage Cable [Road 04-R ] | 15d | 2026-06-10 A | 2026-08-10 A | JDH4-02-007-EN-1420, JDH4-02-007-EN-1430, JDH4-02-007-EN-1640, JDH4-02-007-EN-1650, JDH4-02-007-EN-1660, JDH4-02-007-EN-1670, JDH4-02-007-CN-1250, JDH4-02-007-CN-4820, JDH4-02-007-CN-1250R, JDH4-02-007-CN-4820R, JDH4-02-007-CN-3940 | 100% | 2026-11-02 | 2026-11-19 | Excavator [80 h]; Truck [240 h]; Labor [160 h]; Driver [160 h]; Eq. Operator [160 h]; Excavation for Low Voltage Cable [265.32] | 9,991.1 |  | A3320 | STL | EW |
| JDH4-02-007-CN-2880 |  | Installation of Low Voltage Cables [Road 04-R ] | 16d | 2026-06-13 A | 2026-08-12 A | JDH4-02-007-CN-2820, JDH4-02-007-CN-2830, JDH4-02-007-PR-1770, JDH4-02-007-CN-2830 FF, JDH4-02-007-PR-3030 | 100% | 2027-01-27 | 2027-02-15 | Excavator [105 h]; Truck [273 h]; Bobcat [273 h]; Compactor [81.9 h]; Labor [546 h]; Driver [273 h]; Eq. Operator [819 h]; Electrician [210 h]; Low Voltage Cables [899.81] | 50,825.95 |  | A3390 | STL | EW |
| JDH4-02-007-CN-2920 |  | Installation of Lighting Poles [Road 04-R ] | 12d | 2026-07-21 A | 2026-08-15 A | JDH4-02-007-CN-2090, JDH4-02-007-CN-2880, JDH4-02-007-CN-5790 | 100% | 2027-01-24 | 2027-02-06 | Excavator [120 h]; Truck [120 h]; Crane [120 h]; Labor [360 h]; Driver [120 h]; Eq. Operator [240 h]; Carpenter [120 h]; Steel Fixer [120 h]; Mason [120 h]; Electrician [120 h]; Lighting poles with two arm, height of ( 7 ) meters, including the power distribution box, cables , and RCC foundation. [23.45] | 73,193.61 |  | A3470 | STL | EW |
| JDH4-02-007-CN-2960 |  | Installation of Lighting Luminaires [Road 04-R ] | 12d | 2026-07-25 A | 2026-08-16 A | JDH4-02-007-CN-2920 | 100% | 2027-02-07 | 2027-02-20 | Crane [60 h]; Labor [180 h]; Skilled Labor [120 h]; Eq. Operator [60 h]; Electrician [60 h]; Street Lighting ( LED) Luminaire,of Output? 6730 lumen complete with control gear and lamp, (45) WATT, 230 Volt, 60 HZ [23.45] | 17,422 |  | A3550 | STL | EW |
| JDH4-02-007-CN-2990 |  | Installation of Earthing System [Road 04-R ] | 15d | 2026-08-15 A | 2026-09-24 A | JDH4-02-007-CN-2960, JDH4-02-007-EN-1630, JDH4-02-007-PR-1220 | 100% | 2027-02-15 | 2027-03-06 | Labor [40 h]; Electrician [40 h]; Including earthing of lighting poles ,masts. feeder pillars , Unit substations, L.V feeders and KWH meter. [0.67] | 3,784.51 |  | A3620 | STL | EW |
|  | 2 | **Telecommunication** |  | 2026-06-16 | 2026-08-17 |  |  |  |  |  |  |  |  |  |  |
| JDH4-02-007-CN-3110 |  | Installation Road Crossing R/F 6 way 50mm HDPE Pipe [Road 04-R ] | 14d | 2026-06-16 A | 2026-08-05 A | JDH4-02-007-EN-1620, JDH4-02-007-PR-2280, JDH4-02-007-PR-1710, JDH4-02-007-PR-2280R, JDH4-02-007-PR-1710R, JDH4-02-007-CN-2960, JDH4-02-007-CN-2820 SS, JDH4-02-007-CN-2990 | 100% | 2027-03-17 | 2027-04-03 | Truck [200 h]; Bobcat [200 h]; Compactor [200 h]; Labor [200 h]; Driver [200 h]; Eq. Operator [200 h]; Carpenter [200 h]; Steel Fixer [200 h]; Mason [200 h]; Electrician [200 h]; Installation Road Crossing R/F 6 way 50mm HDPE Pipe [644.54] | 182,034.85 |  | A3890 | TEL | EW |
| JDH4-02-007-CN-3180 |  | Installation Road Crossing Un R/F 6 way 50mm HDPE Pipe [Road 04-R ] | 14d | 2026-06-16 A | 2026-06-22 A | JDH4-02-007-CN-3110 | 100% | 2027-04-03 | 2027-04-19 | Truck [20 h]; Bobcat [20 h]; Compactor [6 h]; Labor [20 h]; Driver [20 h]; Eq. Operator [20 h]; Carpenter [20 h]; Steel Fixer [20 h]; Mason [20 h]; Electrician [20 h]; Installation Road Crossing Un R/F 6 way 50mm HDPE Pipe [8.04] | 3,406.06 |  | A3980 | TEL | EW |
| JDH4-02-007-CN-3290 |  | Installation of Manholes [Road 04-R ] | 15d | 2026-07-22 A | 2026-08-17 A | JDH4-02-007-CN-3180 SS, JDH4-02-007-CN-2990, JDH4-02-007-CN-3940 SS | 100% | 2027-03-31 | 2027-04-17 | Truck [30 h]; Compactor [9 h]; Skilled Labor [30 h]; Driver [30 h]; Eq. Operator [30 h]; Steel Fixer [30 h]; Mason [30 h]; Plumber [30 h]; Manhole type 2 (1500*1200*1200) mm [3.35] | 28,383.81 |  | A4150 | TEL | EW |
|  | 2 | **Road 08** |  | 2025-12-10 | 2026-10-03 |  |  |  |  |  |  |  |  |  |  |
|  | 6 | **Road Works + Roundabout** |  | 2025-12-10 | 2026-09-24 |  |  |  |  |  |  |  |  |  |  |
|  | 1 | **Eartworks & Site grading** |  | 2025-12-10 | 2026-05-03 |  |  |  |  |  |  |  |  |  |  |
| JDH4-02-007-CN-1710 |  | Road excavation [Road 08 ](Completed) | 46d | 2025-12-10 A | 2026-02-01 A | JDH4-02-007-CN-5610 | 100% |  |  | Excavator [210 h]; Loader [105 h]; Water Tanker [210 h]; Grider [210 h]; Truck [420 h]; Road Roller [210 h]; Labor [840 h]; Driver [420 h]; Eq. Operator [210 h]; Road excavation [825.3] | 21,754.74 | 21,754.74 | A1480 | RO | RD |
| JDH4-02-007-CN-1770 |  | Road backfilling [Road 08 ](Completed) | 44d | 2025-12-13 A | 2026-02-01 A | JDH4-02-007-CN-1710, JDH4-02-007-CN-1710 FF | 100% |  |  | Loader [420 h]; Bulldozer [840 h]; Water Tanker [210 h]; Grider [840 h]; Truck [2520 h]; Road Roller [840 h]; Driver [2520 h]; Eq. Operator [210 h]; Road backfilling [28612.1] | 673,400.08 | 673,400.08 | A1560 | RO | RD |
| JDH4-02-007-CN-1770R |  | Road backfilling [Road 08 ] | 14d | 2026-02-03 A | 2026-04-12 A | JDH4-02-007-CN-1710R | 100% | 2026-03-01 | 2026-03-16 | Loader [315 h]; Bulldozer [630 h]; Water Tanker [157.5 h]; Grider [630 h]; Truck [1890 h]; Road Roller [630 h]; Driver [1890 h]; Eq. Operator [157.5 h]; Road backfilling [23409.9] | 550,963.7 | 550,963.7 |  |  | RD |
| JDH4-02-007-CN-1710R |  | Road excavation [Road 08 ] | 14d | 2026-03-04 A | 2026-04-09 A | JDH4-02-007-CN-1830R SS, JDH4-02-007-CN-1830R FF | 100% | 2026-03-11 | 2026-03-30 | Excavator [157.5 h]; Loader [82.5 h]; Water Tanker [157.5 h]; Grider [157.5 h]; Truck [315 h]; Road Roller [157.5 h]; Labor [630 h]; Driver [315 h]; Eq. Operator [157.5 h]; Road excavation [353.7] | 9,323.46 | 9,323.46 |  |  | RD |
| JDH4-02-007-CN-1890 |  | Subgrade [Road 08 ] | 10d | 2026-04-16 A | 2026-05-03 A | JDH4-02-007-CN-5530, JDH4-02-007-CN-5130, JDH4-02-007-CN-2595, JDH4-02-007-CN-2710, JDH4-02-007-CN-1770R, JDH4-02-007-CN-3050, JDH4-02-007-CN-5240 | 100% | 2026-08-25 | 2026-09-05 | Loader [30 h]; Water Tanker [60 h]; Grider [60 h]; Truck [60 h]; Road Roller [60 h]; Labor [360 h]; Driver [120 h]; Eq. Operator [120 h]; Subgrade [3632.74] | 123,117.55 |  | A1770 | RO | RD |

| ID | WBS | Activity | Duration | Start | Finish | Predecessors | Complete | Planned start | Planned finish | Resources | Cost | Actual cost | Old Activity ID | JDH4-02-007 | Construction |
| --- | --- | --- | --- | --- | --- | --- | --- | --- | --- | --- | --- | --- | --- | --- | --- |
|  | 2 | **Asphalt Works** |  | 2026-04-29 | 2026-05-16 |  |  |  |  |  |  |  |  |  |  |
| JDH4-02-007-CN-1950 |  | Aggregate base course [Road 08 ] | 10d | 2026-04-29 A | 2026-05-12 A | JDH4-02-007-CN-1890, JDH4-02-007-PR-1390 | 100% | 2026-09-06 | 2026-09-16 | Loader [31.5 h]; Water Tanker [63 h]; Grider [63 h]; Truck [63 h]; Road Roller [63 h]; Labor [63 h]; Driver [126 h]; Eq. Operator [210 h]; Aggregate base course [2422.05] | 125,409.15 |  | A1860 | RO | RD |
| JDH4-02-007-CN-2000 |  | Prime Coat (MC1) [Road 08 ] | 7d | 2026-04-30 A | 2026-05-13 A | JDH4-02-007-CN-1950 | 100% | 2026-08-09 | 2026-08-16 | Water Tanker [70 h]; Grider [70 h]; Truck [70 h]; Road Roller [70 h]; Asphalte Paver [70 h]; Labor [70 h]; Driver [140 h]; Eq. Operator [140 h]; Bituminous base course (Grading I - Class A), including Prime Coat (MC1) and tack coat (RC2) (if any) [119.93] | 70,000.79 |  | A1940 | RO | RD |
| JDH4-02-007-CN-2050 |  | Bituminous base course [Road 08 ] | 12d | 2026-05-02 A | 2026-05-16 A | JDH4-02-007-CN-2000, JDH4-02-007-MS-1060 | 100% | 2026-08-23 | 2026-09-05 | Water Tanker [84 h]; Truck [420 h]; Road Roller [420 h]; Asphalte Paver [84 h]; Labor [756 h]; Driver [504 h]; Eq. Operator [210 h]; Bituminous base course (Grading I - Class A), including Prime Coat (MC1) and tack coat (RC2) (if any) [1078.7] | 629,616.05 |  | A2000 | RO | RD |
|  | 7 | **Finishing Works** |  | 2026-05-12 | 2026-09-24 |  |  |  |  |  |  |  |  |  |  |
|  | 1 | **Asphalt Wearing Course** |  | 2026-09-09 | 2026-09-12 |  |  |  |  |  |  |  |  |  |  |
| JDH4-02-007-CN-2100 |  | Tack Coat (RC2) [Road 08 ] | 16d | 2026-09-09 A | 2026-09-12 A | JDH4-02-007-PR-1530, JDH4-02-007-CN-2050, JDH4-02-007-CN-2140 | 100% | 2027-03-24 | 2027-04-12 | Water Tanker [55 h]; Grider [55 h]; Truck [55 h]; Road Roller [55 h]; Asphalte Paver [55 h]; Labor [55 h]; Driver [110 h]; Eq. Operator [110 h]; Bituminous concrete wearing course, (Grading I - Class A), including tack coat (RC2). [60.3] | 36,898.96 |  | A2080 | RO | RD |
| JDH4-02-007-CN-2150 |  | Bituminous concrete wearing course [Road 08 ] | 16d | 2026-09-10 A | 2026-09-12 A | JDH4-02-007-CN-2100, JDH4-02-007-PR-1410, JDH4-02-007-CN-2100 FF | 100% | 2027-04-12 | 2027-05-01 | Water Tanker [30 h]; Truck [150 h]; Road Roller [150 h]; Asphalte Paver [30 h]; Labor [270 h]; Driver [180 h]; Eq. Operator [100 h]; Bituminous concrete wearing course, (Grading I - Class A), including tack coat (RC2). [545.38] | 333,730.57 |  | A2140 | RO | RD |
|  | 3 | **Precast Concrete Curb** |  | 2026-05-12 | 2026-07-01 |  |  |  |  |  |  |  |  |  |  |
| JDH4-02-007-CN-2200 |  | Installation of Precast Concrete curb [Road 08 ] | 10d | 2026-05-12 A | 2026-07-01 A | JDH4-02-007-PR-1440, JDH4-02-007-CN-2150 | 100% | 2027-05-09 | 2027-05-25 | Labor [840 h]; Skilled Labor [210 h]; Precast Concrete curb, Type (K1) [3912.13] | 231,115.34 |  | A2240 | RO | RD |
|  | 4 | **Precast Interlocking block pavers** |  | 2026-06-10 | 2026-07-04 |  |  |  |  |  |  |  |  |  |  |
| JDH4-02-007-CN-2250 |  | Installation of Interlocking block pavers for sidewalk/footpath [Road 08 ] | 10d | 2026-06-10 A | 2026-07-04 A | JDH4-02-007-PR-1470, JDH4-02-007-CN-2200 SS | 100% | 2027-05-24 | 2027-06-05 | Labor [1920 h]; Mason [120 h]; Interlocking block pavers for sidewalk/footpath [3112.82] | 219,785.33 |  | A2310 | RO | RD |
|  | 5 | **Pavement Markings** |  | 2026-09-23 | 2026-09-24 |  |  |  |  |  |  |  |  |  |  |
| JDH4-02-007-CN-2300 |  | Pavement markings [Road 08 ] | 12d | 2026-09-23 A | 2026-09-24 A | JDH4-02-007-PR-1500, JDH4-02-007-CN-2340, JDH4-02-007-CN-2250 SS+2d, JDH4-02-007-CN-2290 | 100% | 2027-01-30 | 2027-02-13 | Labor [80 h]; Skilled Labor [80 h]; Retroreflective Thermoplastic White Traffic lines [1428.44] | 62,150.42 |  | A2430 | RO | RD |
|  | 6 | **Traffic Signage** |  | 2026-07-15 | 2026-09-05 |  |  |  |  |  |  |  |  |  |  |
| JDH4-02-007-CN-2350 |  | Installation of Traffic Signs [Road 08 ] | 15d | 2026-07-15 A | 2026-09-05 A | JDH4-02-007-PR-1530, JDH4-02-007-CN-2390 | 100% | 2027-05-11 | 2027-06-01 | Labor [150 h]; Skilled Labor [150 h]; Traffic signs, ground mounted, 1 Sheet Alumenium, (breakaway)Single post, with all accessories according to the drawings and specifications. [26.8] | 103,584.27 |  | A2530 | RO | RD |
|  | 1 | **Storm Water Drainage** |  | 2026-01-15 | 2026-08-26 |  |  |  |  |  |  |  |  |  |  |
|  | 1 | **Pipe Works** |  | 2026-01-15 | 2026-03-09 |  |  |  |  |  |  |  |  |  |  |
| JDH4-02-007-CN-5330 |  | Excavation and Compaction (FDT) [Road 08 ](Completed) | 15d | 2026-01-15 A | 2026-02-01 A | JDH4-02-007-CN-5370, JDH4-02-007-CN-1770 | 100% |  |  | Excavator [400 h]; Water Tanker [400 h]; Truck [1600 h]; Labor [1600 h]; Driver [1200 h]; Eq. Operator [200 h]; Depth: 0.0m - 1.5m [96.45] | 8,213.94 | 8,213.94 | A8700 | STO | SD |
| JDH4-02-007-CN-5380 |  | Sand Bedding [Road 08 ](Completed) | 11d | 2026-01-20 A | 2026-02-01 A | JDH4-02-007-CN-5330 | 100% |  |  | Loader [65 h]; Truck [195 h]; Labor [130 h]; Driver [130 h]; Eq. Operator [130 h]; Depth: 1.51m - 2.0m [96.45] | 4,106.98 | 4,106.98 | A8760 | STO | SD |
| JDH4-02-007-CN-5430 |  | Installation of GRP Pipe [Road 08 ](Completed) | 11d | 2026-01-20 A | 2026-02-01 A | JDH4-02-007-CN-5380, JDH4-02-007-PR-1680, JDH4-02-007-PR-1560, JDH4-02-007-PR-1590 | 100% |  |  | Excavator [105 h]; Crane [210 h]; Labor [630 h]; Eq. Operator [210 h]; Plumber [210 h]; Pipe-Laying Worker [210 h]; Depth: 0.0m - 1.5m [96.45] | 57,497.63 | 57,497.63 | A8820 | STO | SD |
| JDH4-02-007-CN-5480 |  | Sand Cover & Warning Tape [Road 08 ](Completed) | 9d | 2026-01-22 A | 2026-02-01 A | JDH4-02-007-CN-5430 | 100% |  |  | Labor [100 h]; Skilled Labor [100 h]; Depth: 2.01m - 2.5m [96.45] | 4,106.98 | 4,106.98 | A8880 | STO | SD |
| JDH4-02-007-CN-5530 |  | Backfilling & Compaction [Road 08 ](Completed) | 8d | 2026-01-24 A | 2026-02-01 A | JDH4-02-007-CN-5480 SS, JDH4-02-007-CN-5480 FF | 100% |  |  | Bulldozer [157.5 h]; Truck [210 h]; Compactor [63 h]; Labor [1050 h]; Driver [210 h]; Eq. Operator [210 h]; Depth: 1.50m - 2.0m [96.45] | 8,213.94 | 8,213.94 | A8940 | STO | SD |
| JDH4-02-007-CN-5330R |  | Excavation and Compaction (FDT) [Road 08 ] | 20d | 2026-02-03 A | 2026-03-03 A | JDH4-02-007-CN-5330, JDH4-02-007-CN-1710R | 100% | 2026-03-01 | 2026-03-26 | Excavator [300 h]; Water Tanker [300 h]; Truck [1200 h]; Labor [1200 h]; Driver [900 h]; Eq. Operator [150 h]; Depth: 0.0m - 1.5m [546.55] | 46,545.67 | 46,545.67 |  |  | SD |
| JDH4-02-007-CN-5380R |  | Sand Bedding [Road 08 ] | 11d | 2026-02-03 A | 2026-03-03 A | JDH4-02-007-CN-5330 SS, JDH4-02-007-CN-5330 FF, JDH4-02-007-CN-5380, JDH4-02-007-CN-5330R | 100% | 2026-03-28 | 2026-04-08 | Loader [52.5 h]; Truck [150 h]; Labor [97.5 h]; Driver [97.5 h]; Eq. Operator [97.5 h]; Depth: 1.51m - 2.0m [546.55] | 23,272.86 | 23,272.86 |  |  | SD |
| JDH4-02-007-CN-5430R |  | Installation of GRP Pipe [Road 08 ] | 26d | 2026-02-04 A | 2026-03-04 A | JDH4-02-007-CN-5380R, JDH4-02-007-PR-1670R, JDH4-02-007-PR-1710R, JDH4-02-007-CN-1770R | 100% | 2026-04-09 | 2026-05-09 | Excavator [82.5 h]; Crane [157.5 h]; Labor [472.5 h]; Eq. Operator [157.5 h]; Plumber [157.5 h]; Pipe-Laying Worker [157.5 h]; Depth: 0.0m - 1.5m [546.55] | 325,819.88 | 325,819.88 |  |  | SD |
| JDH4-02-007-CN-5530R |  | Backfilling & Compaction [Road 08 ] | 21d | 2026-02-04 A | 2026-03-09 A | JDH4-02-007-CN-5480 SS, JDH4-02-007-CN-5480 FF, JDH4-02-007-CN-5530, JDH4-02-007-CN-5480R | 100% | 2026-05-21 | 2026-06-17 | Bulldozer [120 h]; Truck [157.5 h]; Compactor [45 h]; Labor [787.5 h]; Driver [157.5 h]; Eq. Operator [157.5 h]; Depth: 1.50m - 2.0m [546.55] | 46,545.67 | 46,545.67 |  |  | SD |
| JDH4-02-007-CN-5480R |  | Sand Cover & Warning Tape [Road 08 ] | 10d | 2026-02-05 A | 2026-03-07 A | JDH4-02-007-CN-5430, JDH4-02-007-CN-5480, JDH4-02-007-CN-5430R | 100% | 2026-05-10 | 2026-05-20 | Labor [75 h]; Skilled Labor [75 h]; Depth: 2.01m - 2.5m [546.55] | 23,272.86 | 23,272.86 |  |  | SD |

| ID | WBS | Activity | Duration | Start | Finish | Predecessors | Complete | Planned start | Planned finish | Resources | Cost | Old Activity ID | JDH4-02-007 | Construction |
| --- | --- | --- | --- | --- | --- | --- | --- | --- | --- | --- | --- | --- | --- | --- |
|  | 5 | **Pipe Encasement** |  | 2026-02-05 | 2026-03-07 |  |  |  |  |  |  |  |  |  |
| JDH4-02-007-CN-5800 |  | Pipe Encasement Works [Road 08 ] | 5d | 2026-02-05 A | 2026-03-07 A | JDH4-02-007-CN-5430, JDH4-02-007-CN-5430R | 100% | 2026-07-15 | 2026-07-20 | Labor [200 h]; Carpenter [50 h]; Mason [50 h]; Pipe encasement dia 300 mm [42.88] | 20,926.82 | A9610 | STO | SD |
|  | 2 | **Manholes** |  | 2026-02-03 | 2026-02-15 |  |  |  |  |  |  |  |  |  |
| JDH4-02-007-CN-5630 |  | Installation of Precast Manhole Ring [Road 08 ] | 6d | 2026-02-03 A | 2026-02-15 A | JDH4-02-007-CN-5800, JDH4-02-007-PR-1710, JDH4-02-007-PR-1710R | 100% | 2026-05-16 | 2026-05-21 | Truck [60 h]; Compactor [18 h]; Skilled Labor [60 h]; Driver [60 h]; Eq. Operator [60 h]; Steel Fixer [60 h]; Mason [60 h]; Plumber [60 h]; MH depth 1.50 - 2.0m [8.04] | 224,206.55 | A9290 | STO | SD |
|  | 6 | **Precast Acces Openinig** |  | 2026-08-05 | 2026-08-26 |  |  |  |  |  |  |  |  |  |
| JDH4-02-007-CN-5680 |  | Installation of Precast Access Opening [Road 08 ] | 3d | 2026-08-05 A | 2026-08-26 A | JDH4-02-007-CN-5630, JDH4-02-007-PR-1700R, JDH4-02-007-PR-1650R | 100% | 2026-09-09 | 2026-09-12 | Labor [60 h]; Skilled Labor [30 h]; Cover with dimensions1000*1000 mm at variable depth including frame [4.02] | 11,353.53 | A9370 | STO | SD |
|  | 3 | **Catch Basins** |  | 2026-03-26 | 2026-04-18 |  |  |  |  |  |  |  |  |  |
| JDH4-02-007-CN-5730 |  | Construction of Catch basins [Road 08 ] | 9d | 2026-03-26 A | 2026-04-18 A | JDH4-02-007-CN-5680, JDH4-02-007-PR-1830 | 100% | 2026-06-30 | 2026-07-09 | Truck [90 h]; Compactor [27 h]; Skilled Labor [90 h]; Driver [90 h]; Eq. Operator [90 h]; Steel Fixer [90 h]; Mason [90 h]; Plumber [90 h]; Double Catch basin [11.39] | 69,698.03 | A9460 | STO | SD |
|  | 2 | **Sewerage Network** |  | 2026-02-03 | 2026-03-03 |  |  |  |  |  |  |  |  |  |
|  | 1 | **Pipe Works** |  | 2026-02-03 | 2026-03-03 |  |  |  |  |  |  |  |  |  |
| JDH4-02-007-CN-4780 |  | Excavation & Compaction (FDT) [Road 08 ] | 18d | 2026-02-03 A | 2026-02-25 A | JDH4-02-007-CN-5330, JDH4-02-007-CN-5330R | 100% | 2026-03-12 | 2026-04-06 | Excavator [105 h]; Water Tanker [69.3 h]; Truck [819 h]; Labor [1092 h]; Driver [819 h]; Eq. Operator [210 h]; Depth : 0.0m - 1.5m [448.9] | 32,954.6 | A7500 | SEW | SW |
| JDH4-02-007-CN-4850 |  | Sand Bedding [Road 08 ] | 9d | 2026-02-05 A | 2026-02-26 A | JDH4-02-007-CN-4780, JDH4-02-007-CN-1850 | 100% | 2026-04-06 | 2026-04-16 | Loader [45 h]; Truck [90 h]; Labor [90 h]; Driver [90 h]; Eq. Operator [90 h]; Depth : 1.51m - 2.5m [448.9] | 16,477.28 | A7580 | SEW | SW |
| JDH4-02-007-CN-4920 |  | Installation of GRP Pipe [Road 08 ] | 9d | 2026-02-09 A | 2026-02-28 A | JDH4-02-007-CN-4850, JDH4-02-007-PR-1620, JDH4-02-007-CN-1660, JDH4-02-007-PR-1560, JDH4-02-007-PR-1620R, JDH4-02-007-PR-1560R | 100% | 2026-04-16 | 2026-04-27 | Loader [45 h]; Truck [90 h]; Labor [90 h]; Driver [90 h]; Eq. Operator [90 h]; Depth > 2.5 m [448.9] | 164,772.96 | A7660 | SEW | SW |
| JDH4-02-007-CN-4990 |  | Gravity Test [Road 08 ] | 17d | 2026-02-11 A | 2026-02-28 A | JDH4-02-007-CN-4920, JDH4-02-007-PR-1230 | 100% | 2026-05-05 | 2026-05-24 | Excavator [85 h]; Crane [170 h]; Labor [510 h]; Eq. Operator [170 h]; Plumber [170 h]; Pipe-Laying Worker [170 h]; Depth: 0.0m - 1.5m [448.9] | 65,909.2 | A7740 | SEW | SW |
| JDH4-02-007-CN-5060 |  | Sand Cover & Warning Tape [Road 08 ] | 7d | 2026-02-12 A | 2026-03-01 A | JDH4-02-007-CN-4990 | 100% | 2026-05-25 | 2026-06-04 | Labor [70 h]; Skilled Labor [70 h]; Depth: 2.51m - 3.5m [448.9] | 16,477.28 | A7820 | SEW | SW |
| JDH4-02-007-CN-5130 |  | Backfilling & Compaction [Road 08 ] | 21d | 2026-02-14 A | 2026-03-03 A | JDH4-02-007-CN-5060, JDH4-02-007-CN-5730 | 100% | 2026-06-06 | 2026-06-29 | Bulldozer [78.75 h]; Truck [210 h]; Compactor [63 h]; Labor [1050 h]; Driver [210 h]; Eq. Operator [210 h]; Depth > 2.5 m [448.9] | 32,954.6 | A7900 | SEW | SW |
|  | 5 | **Pipe Encasement** |  | 2026-02-12 | 2026-03-01 |  |  |  |  |  |  |  |  |  |
| JDH4-02-007-CN-5270 |  | Pipe Encasement Works [Road 08 ] | 11d | 2026-02-12 A | 2026-03-01 A | JDH4-02-007-CN-4920, JDH4-02-007-CN-5130, JDH4-02-007-CN-5530R | 100% | 2026-07-25 | 2026-08-05 | Labor [200 h]; Carpenter [50 h]; Mason [50 h]; Pipe encasement dia 200 mm [7.37] | 1,673.19 | A8210 | SEW | SW |
|  | 2 | **Manholes** |  | 2026-02-08 | 2026-03-03 |  |  |  |  |  |  |  |  |  |
| JDH4-02-007-CN-5200 |  | Installation of Manholes [Road 08 ] | 7d | 2026-02-08 A | 2026-03-03 A | JDH4-02-007-CN-5270, JDH4-02-007-PR-1650, JDH4-02-007-PR-1650R | 100% | 2026-07-13 | 2026-07-20 | Truck [70 h]; Compactor [21 h]; Skilled Labor [70 h]; Driver [70 h]; Eq. Operator [70 h]; Steel Fixer [70 h]; Mason [70 h]; Plumber [70 h]; MH depth 1.51 - 2.5m [9.38] | 227,091.53 | A8090 | SEW | SW |
|  | 3 | **TSE Network** |  | 2026-02-03 | 2026-05-09 |  |  |  |  |  |  |  |  |  |
|  | 1 | **Pipe Works** |  | 2026-02-03 | 2026-05-02 |  |  |  |  |  |  |  |  |  |
| JDH4-02-007-CN-4000 |  | Excavation and Compaction (FDT) [Road 08 ] | 18d | 2026-02-03 A | 2026-04-14 A | JDH4-02-007-CN-4780 | 100% | 2026-04-06 | 2026-04-27 | Excavator [105 h]; Water Tanker [79.8 h]; Truck [630 h]; Labor [1260 h]; Driver [945 h]; Eq. Operator [210 h]; Depth: 0.0m - 1.5m [523.94] | 18,710.26 | A6000 | TSE | TSE |
| JDH4-02-007-CN-4070 |  | Sand Bedding [Road 08 ] | 11d | 2026-02-07 A | 2026-04-15 A | JDH4-02-007-CN-4000 | 100% | 2026-04-27 | 2026-05-10 | Loader [55 h]; Truck [110 h]; Labor [110 h]; Driver [110 h]; Eq. Operator [110 h]; Depth: 1.51m - 2.5m [523.94] | 9,355.16 | A6080 | TSE | TSE |
| JDH4-02-007-CN-4140 |  | Installation of HDPE Pipe [Road 08 ] | 20d | 2026-02-08 A | 2026-04-29 A | JDH4-02-007-CN-4070, JDH4-02-007-PR-1590, JDH4-02-007-PR-1590R | 100% | 2026-05-10 | 2026-06-06 | Excavator [100 h]; Crane [200 h]; Labor [600 h]; Eq. Operator [200 h]; Plumber [200 h]; Pipe-Laying Worker [200 h]; Depth > 2.5 m [523.94] | 93,551.37 | A6160 | TSE | TSE |
| JDH4-02-007-CN-4210 |  | Initial Pressure Test [Road 08 ] | 8d | 2026-02-12 A | 2026-04-30 A | JDH4-02-007-CN-4140 | 100% | 2026-06-06 | 2026-06-15 | Labor [80 h]; Skilled Labor [80 h]; Depth: 0.0m - 1.5m [523.94] | 37,420.53 | A6240 | TSE | TSE |
| JDH4-02-007-CN-4280 |  | Sand Cover & Warning [Road 08 ] | 8d | 2026-02-14 A | 2026-05-02 A | JDH4-02-007-CN-4210, JDH4-02-007-CN-5530, JDH4-02-007-CN-5530R | 100% | 2026-06-15 | 2026-06-24 | Labor [80 h]; Skilled Labor [80 h]; Depth > 1.5 m [523.94] | 9,355.16 | A6320 | TSE | TSE |
| JDH4-02-007-CN-4350 |  | Backfilling & Compaction [Road 08 ] | 10d | 2026-02-15 A | 2026-05-02 A | JDH4-02-007-CN-4280 | 100% | 2026-06-24 | 2026-07-06 | Bulldozer [135 h]; Truck [270 h]; Compactor [81 h]; Labor [1350 h]; Driver [270 h]; Eq. Operator [180 h]; Depth: 1.51m - 2.5m [523.94] | 18,710.26 | A6400 | TSE | TSE |
| JDH4-02-007-CN-4660 |  | Point of Connection [Road 08 ] | 5d | 2026-04-18 A | 2026-05-02 A | JDH4-02-007-CN-4140 | 100% | 2026-06-22 | 2026-06-27 | Labor [50 h]; Plumber [50 h]; Pipe-Laying Worker [50 h]; POC with dia 110 mm [1.34] | 8,311.08 | A7210 | TSE | TSE |

| ID | WBS | Activity | Duration | Start | Finish | Predecessors | Complete | Planned start | Planned finish | Resources | Cost | Old Activity ID | JDH4-02-007 | Construction |
| --- | --- | --- | --- | --- | --- | --- | --- | --- | --- | --- | --- | --- | --- | --- |
|  | 2 | **Pipe Encasement** |  | 2026-02-14 | 2026-05-02 |  |  |  |  |  |  |  |  |  |
| JDH4-02-007-CN-4420 |  | Encasement for Pipes [Road 08 ] | 7d | 2026-02-14 A | 2026-05-02 A | JDH4-02-007-CN-4140 | 100% | 2026-07-15 | 2026-07-22 | Labor [280 h]; Carpenter [70 h]; Mason [70 h]; Pipe encasement dia 160 mm [41.54] | 9,368.07 | A6560 | TSE | TSE |
|  | 3 | **Valves** |  | 2026-03-15 | 2026-05-09 |  |  |  |  |  |  |  |  |  |
| JDH4-02-007-CN-4490 |  | Installation of Gate Valves [Road 08 ] | 7d | 2026-03-15 A | 2026-05-09 A | JDH4-02-007-CN-4420 | 100% | 2026-06-16 | 2026-06-24 | Labor [70 h]; Skilled Labor [70 h]; Pipe-Laying Worker [70 h]; Gate valves dia (150) mm on pipe dia (160) mm . [2.01] | 11,204.14 | A6710 | TSE | TSE |
|  | 4 | **Risers** |  | 2026-04-15 | 2026-05-07 |  |  |  |  |  |  |  |  |  |
| JDH4-02-007-CN-4730 |  | Installation of Irrigation Riser with [Road 08 ] | 7d | 2026-04-15 A | 2026-05-07 A | JDH4-02-007-CN-4490, JDH4-02-007-CN-5730, JDH4-02-007-PR-1930 | 100% | 2026-07-19 | 2026-07-26 | Labor [70 h]; Skilled Labor [70 h]; Pipe-Laying Worker [70 h]; Irrigation Riser with [2.01] | 13,245.78 | A7290 | TSE | TSE |
|  | 4 | **Potable Network** |  | 2026-03-09 | 2026-05-09 |  |  |  |  |  |  |  |  |  |
|  | 1 | **Pipe Works** |  | 2026-03-09 | 2026-04-30 |  |  |  |  |  |  |  |  |  |
| JDH4-02-007-CN-3320 |  | Excavation and Compaction (FDT) [Road 08 ] | 11d | 2026-03-09 A | 2026-04-09 A | JDH4-02-007-CN-4780, JDH4-02-007-MS-1050, JDH4-02-007-CN-4000 | 100% | 2026-05-02 | 2026-05-14 | Excavator [80 h]; Water Tanker [60.8 h]; Truck [480 h]; Labor [960 h]; Driver [720 h]; Eq. Operator [160 h]; Depth: 0.0m - 1.5m [390.61] | 12,575.3 | A4360 | POT | PW |
| JDH4-02-007-CN-3390 |  | Sand Bedding [Road 08 ] | 8d | 2026-03-11 A | 2026-04-13 A | JDH4-02-007-CN-3320 | 100% | 2026-05-14 | 2026-05-24 | Loader [40 h]; Truck [80 h]; Labor [80 h]; Driver [80 h]; Eq. Operator [80 h]; Depth: 1.51m - 2.5m [390.61] | 6,287.65 | A4440 | POT | PW |
| JDH4-02-007-CN-3460 |  | Installation of HDPE Pipe [Road 08 ] | 15d | 2026-03-14 A | 2026-04-29 A | JDH4-02-007-CN-3390, JDH4-02-007-PR-1560, JDH4-02-007-PR-1560R | 100% | 2026-05-24 | 2026-06-14 | Excavator [75 h]; Crane [150 h]; Labor [450 h]; Eq. Operator [150 h]; Plumber [150 h]; Pipe-Laying Worker [150 h]; Depth: > 2.5 [390.61] | 62,876.41 | A4520 | POT | PW |
| JDH4-02-007-CN-3530 |  | Initial Pressure Test [Road 08 ] | 6d | 2026-03-17 A | 2026-04-30 A | JDH4-02-007-CN-3460 | 100% | 2026-06-14 | 2026-06-21 | Labor [60 h]; Skilled Labor [60 h]; Depth: 0.0m - 1.5m [390.61] | 25,150.56 | A4600 | POT | PW |
| JDH4-02-007-CN-3600 |  | Sand Cover & Warning Tape [Road 08 ] | 6d | 2026-03-24 A | 2026-04-01 A | JDH4-02-007-CN-3530, JDH4-02-007-CN-4660 | 100% | 2026-06-21 | 2026-06-28 | Labor [60 h]; Skilled Labor [60 h]; Depth: > 1.5m [390.61] | 6,287.65 | A4680 | POT | PW |
| JDH4-02-007-CN-3670 |  | Backfilling [Road 08 ] | 10d | 2026-03-28 A | 2026-04-02 A | JDH4-02-007-CN-3600, JDH4-02-007-CN-4660 | 100% | 2026-06-28 | 2026-07-09 | Bulldozer [45 h]; Truck [120 h]; Compactor [36 h]; Labor [600 h]; Driver [120 h]; Eq. Operator [120 h]; Depth >1.5 m [390.61] | 12,575.3 | A4760 | POT | PW |
|  | 2 | **Pipe Encasement** |  | 2026-03-14 | 2026-04-29 |  |  |  |  |  |  |  |  |  |
| JDH4-02-007-CN-3740 |  | Encasement for Pipes [Road 08 ] | 5d | 2026-03-14 A | 2026-04-29 A | JDH4-02-007-CN-3460 | 100% | 2026-07-15 | 2026-07-20 | Labor [200 h]; Carpenter [50 h]; Mason [50 h]; Pipe encasement diameter 200 mm [47.57] | 9,936.1 | A4900 | POT | PW |
|  | 3 | **Valves** |  | 2026-03-10 | 2026-05-07 |  |  |  |  |  |  |  |  |  |
| JDH4-02-007-CN-3810 |  | Installation of Gate Valves [Road 08 ] | 6d | 2026-03-10 A | 2026-05-07 A | JDH4-02-007-CN-3740 | 100% | 2026-06-20 | 2026-06-27 | Labor [60 h]; Skilled Labor [60 h]; Pipe-Laying Worker [60 h]; Gate valves dia (200) mm on pipe dia (200) mm . [3.35] | 13,140.65 | A5040 | POT | PW |
|  | 4 | **Fire Hydrant** |  | 2026-04-15 | 2026-05-09 |  |  |  |  |  |  |  |  |  |
| JDH4-02-007-CN-3900 |  | Installation of 3-outlet fire hydrant [Road 08 ] | 7d | 2026-04-15 A | 2026-05-09 A | JDH4-02-007-CN-3810, JDH4-02-007-CN-5200, JDH4-02-007-CN-3810 FF, JDH4-02-007-CN-3810 SS | 100% | 2026-07-30 | 2026-08-06 | Labor [70 h]; Skilled Labor [70 h]; Pipe-Laying Worker [70 h]; 3-outlet fire hydrant [5.36] | 50,460.11 | A5280 | POT | PW |
|  | 5 | **Electrical Works** |  | 2026-04-02 | 2026-10-03 |  |  |  |  |  |  |  |  |  |
|  | 1 | **LV Cables** |  | 2026-06-25 | 2026-08-20 |  |  |  |  |  |  |  |  |  |
|  | 2 | **Low Voltage Cable** |  | 2026-06-25 | 2026-08-20 |  |  |  |  |  |  |  |  |  |
| JDH4-02-007-CN-2740 |  | Installation of Ring Main Unit (RMU) 3-way, 13.8kV [Road 08 ] | 5d | 2026-06-25 A | 2026-08-20 A | JDH4-02-007-CN-2730 | 100% | 2026-09-14 | 2026-09-19 | Labor [50 h]; Electrician [50 h]; Ring Main Unit (RMU) 3-way, 13.8kV [0.67] | 63,075.14 | A3240 | MV | EW |
| JDH4-02-007-CN-2595 |  | Excavation for Low Voltage Cable [Road 08 ] | 18d | 2026-07-21 A | 2026-08-18 A | JDH4-02-007-CN-3320, JDH4-02-007-CN-3810 | 100% | 2026-07-21 | 2026-08-10 | Excavator [120 h]; Truck [120 h]; Labor [120 h]; Driver [120 h]; Eq. Operator [120 h]; Excavation for Low Voltage Cable [191.62] | 10,823.69 | A3140 | STL | EW |
| JDH4-02-007-CN-2600 |  | Installation of Low Voltage Cables [Road 08 ] | 6d | 2026-07-23 A | 2026-08-19 A | JDH4-02-007-CN-2595, JDH4-02-007-CN-3670, JDH4-02-007-CN-4350 | 100% | 2026-08-11 | 2026-08-17 | Excavator; Truck; Bobcat; Compactor; Labor; Driver; Eq. Operator; Electrician; Cables, Aluminium, (4Cx185mm²,AL/XLPE/PVC). [127.3] | 29,946.31 | A3030 | STL | EW |
| JDH4-02-007-CN-2730 |  | Installation of Unit Substation , 13.8/0.4 kV, 500kVA with RMU [Road 08 ] | 5d | 2026-07-25 A | 2026-08-20 A | JDH4-02-007-CN-2595, JDH4-02-007-CN-2710 | 100% | 2026-08-31 | 2026-09-05 | Labor [50 h]; Electrician [50 h]; Unit Substation , 13.8/0.4 kV, 500kVA with RMU [0.67] | 75,690.17 | A3220 | MV | EW |
| JDH4-02-007-CN-2710 |  | Installation of Low Voltage Distribution Panel (Main: 100A, MCCB, 5-50A, MCCB) [Road 08 ] | 11d | 2026-08-15 A | 2026-08-16 A | JDH4-02-007-CN-2600 | 100% | 2026-08-31 | 2026-09-13 | Labor [50 h]; Electrician [50 h]; Low Voltage Distribution Panel (Main: 100A, MCCB, 5-50A, MCCB) [0.67] | 15,768.79 | A3110 | STL | EW |

| ID | WBS | Activity | Duration | Start | Finish | Predecessors | Complete | Planned start | Planned finish | Resources | Cost | Actual cost | Old Activity ID | JDH4-02-007 | Construction |
| --- | --- | --- | --- | --- | --- | --- | --- | --- | --- | --- | --- | --- | --- | --- | --- |
|  | 3 | **Street Lighting** |  | 2026-04-02 | 2026-10-03 |  |  |  |  |  |  |  |  |  |  |
| JDH4-02-007-CN-2760 |  | Installation of Road Crossing Ducts [Road 08 ] | 12d | 2026-04-02 A | 2026-04-23 A | JDH4-02-007-CN-2750 | 100% | 2026-08-11 | 2026-08-24 | Truck [120 h]; Bobcat [120 h]; Compactor [36 h]; Labor [120 h]; Driver [120 h]; Eq. Operator [120 h]; Carpenter [120 h]; Steel Fixer [120 h]; Mason [120 h]; Electrician [120 h]; Road crossing ducts, 2 way (2 x 100mm PVC) [48.24] | 17,695.84 |  | A3285 | STL | EW |
| JDH4-02-007-CN-2890 |  | Installation of Lighting Poles [Road 08 ] | 16d | 2026-05-13 A | 2026-08-13 A | JDH4-02-007-PR-1780 SS, JDH4-02-007-CN-2050, JDH4-02-007-CN-2840 | 100% | 2026-09-27 | 2026-10-14 | Excavator [130 h]; Truck [130 h]; Crane [130 h]; Labor [390 h]; Driver [130 h]; Eq. Operator [260 h]; Carpenter [130 h]; Steel Fixer [130 h]; Mason [130 h]; Electrician [130 h]; Lighting poles with one arm, height of ( 7 ) meters, including the power distribution box, cables , and RCC foundation. [25.46] | 79,467.35 |  | A3440 | STL | EW |
| JDH4-02-007-CN-2750 |  | Excavation for Low Voltage Cable [Road 08 ] | 13d | 2026-05-16 A | 2026-08-17 A | JDH4-02-007-CN-2595, JDH4-02-007-CN-3900 SS | 100% | 2026-08-11 | 2026-08-25 | Excavator [70 h]; Truck [140 h]; Labor [140 h]; Driver [140 h]; Eq. Operator [140 h]; Excavation for Low Voltage Cable [221.1] | 8,325.92 |  | A3280 | STL | EW |
| JDH4-02-007-CN-2930 |  | Installation of Lighting Luminaires [Road 08 ] | 12d | 2026-05-16 A | 2026-08-13 A | JDH4-02-007-CN-2890, JDH4-02-007-PR-1790 SS, JDH4-02-007-CN-2740, JDH4-02-007-CN-3900 | 100% | 2026-10-15 | 2026-10-28 | Crane [90 h]; Labor [270 h]; Skilled Labor [180 h]; Eq. Operator [90 h]; Electrician [90 h]; Street Lighting ( LED) Luminaire,of Output? 10830 lumen complete with control gear and lamp, (75) WATT, 230 Volt, 60 HZ [26.8] | 19,910.85 |  | A3520 | STL | EW |
| JDH4-02-007-CN-2840 |  | Installation of Low Voltage Cables [Road 08 ] | 21d | 2026-06-15 A | 2026-08-20 A | JDH4-02-007-CN-2760 | 100% | 2026-08-20 | 2026-09-13 | Excavator [105 h]; Truck [231 h]; Bobcat [231 h]; Compactor [69.3 h]; Labor [462 h]; Driver [231 h]; Eq. Operator [693 h]; Electrician [210 h]; Low Voltage Cables [750.4] | 42,386.49 |  | A3350 | STL | EW |
| JDH4-02-007-CN-2970 |  | Installation of Earthing System [Road 08 ] | 12d | 2026-08-15 A | 2026-10-03 A | JDH4-02-007-CN-2930 | 100% | 2026-11-14 | 2026-11-28 | Labor [90 h]; Electrician [90 h]; Including earthing of lighting poles ,masts. feeder pillars , Unit substations, L.V feeders and KWH meter. [1.34] | 7,569.02 |  | A3590 | STL | EW |
|  | 2 | **Telecommunication** |  | 2026-04-02 | 2026-06-18 |  |  |  |  |  |  |  |  |  |  |
| JDH4-02-007-CN-3070 |  | Installation Road Crossing R/F 6 way 50mm HDPE Pipe [Road 08 ] | 10d | 2026-04-02 A | 2026-04-23 A | JDH4-02-007-CN-2750 | 100% | 2026-08-11 | 2026-08-22 | Truck [140 h]; Bobcat [140 h]; Compactor [42 h]; Labor [140 h]; Driver [140 h]; Eq. Operator [140 h]; Carpenter [140 h]; Steel Fixer [140 h]; Mason [140 h]; Electrician [140 h]; Installation Road Crossing R/F 6 way 50mm HDPE Pipe [448.9] | 126,781.03 |  | A3850 | TEL | EW |
| JDH4-02-007-CN-3140 |  | Installation Road Crossing Un R/F 6 way 50mm HDPE Pipe [Road 08 ] | 10d | 2026-04-05 A | 2026-04-22 A | JDH4-02-007-CN-3070 | 100% | 2026-08-23 | 2026-09-02 | Truck [30 h]; Bobcat [30 h]; Compactor [9 h]; Labor [30 h]; Driver [30 h]; Eq. Operator [30 h]; Carpenter [30 h]; Steel Fixer [30 h]; Mason [30 h]; Electrician [30 h]; Installation Road Crossing Un R/F 6 way 50mm HDPE Pipe [9.38] | 3,973.73 |  | A3940 | TEL | EW |
| JDH4-02-007-CN-3250 |  | Installation of Manholes [Road 08 ] | 15d | 2026-04-16 A | 2026-05-18 A | JDH4-02-007-CN-3200 | 100% | 2026-09-07 | 2026-09-24 | Truck [40 h]; Compactor [12 h]; Skilled Labor [40 h]; Driver [40 h]; Eq. Operator [40 h]; Steel Fixer [40 h]; Mason [40 h]; Plumber [40 h]; Manhole type 2 (1500*1200*1200) mm [5.36] | 45,414.1 |  | A4110 | TEL | EW |
| JDH4-02-007-CN-3200 |  | Installation of 2 x 32 mm diameter HDPE ducts [Road 08 ] | 10d | 2026-06-13 A | 2026-06-18 A | JDH4-02-007-CN-3140 | 100% | 2026-08-26 | 2026-09-06 | Truck [210 h]; Bobcat [210 h]; Compactor [63 h]; Labor [210 h]; Driver [210 h]; Eq. Operator [210 h]; Carpenter [210 h]; Steel Fixer [210 h]; Mason [210 h]; Electrician [210 h]; 2 x 32 mm diameter HDPE ducts [746.38] | 98,371.99 |  | A4020 | TEL | EW |
|  | 4 | **Road 07-N** |  | 2025-12-04 | 2026-10-06 |  |  |  |  |  |  |  |  |  |  |
|  | 6 | **Road Works** |  | 2025-12-04 | 2026-10-06 |  |  |  |  |  |  |  |  |  |  |
|  | 1 | **Eartworks & Site grading** |  | 2025-12-04 | 2026-05-09 |  |  |  |  |  |  |  |  |  |  |
| JDH4-02-007-CN-1730 |  | Road excavation [Road 07-N ](Completed) | 51d | 2025-12-04 A | 2026-02-01 A | JDH4-02-007-CN-5530 | 100% |  |  | Excavator [105 h]; Loader [105 h]; Water Tanker [52.5 h]; Grider [210 h]; Truck [315 h]; Road Roller [210 h]; Labor [840 h]; Driver [420 h]; Eq. Operator [210 h]; Road excavation [517.05] | 13,629.33 | 13,629.33 | A1500 | RO | RD |
| JDH4-02-007-CN-1790 |  | Road backfilling [Road 07-N ](Completed) | 45d | 2025-12-11 A | 2026-02-01 A | JDH4-02-007-CN-1730 SS | 100% |  |  | Loader [420 h]; Bulldozer [630 h]; Water Tanker [210 h]; Grider [840 h]; Truck [1680 h]; Road Roller [840 h]; Driver [2520 h]; Eq. Operator [210 h]; Road backfilling [17777.5] | 418,403.53 | 418,403.53 | A1580 | RO | RD |
| JDH4-02-007-CN-1790R |  | Road backfilling [Road 07-N ] | 22d | 2026-02-02 A | 2026-03-09 A | JDH4-02-007-CN-1730R SS+2d | 100% | 2026-03-16 | 2026-04-13 | Loader [315 h]; Bulldozer [472.5 h]; Water Tanker [157.5 h]; Grider [630 h]; Truck [1260 h]; Road Roller [630 h]; Driver [1890 h]; Eq. Operator [157.5 h]; Road backfilling [33015.4] | 777,035.12 | 777,035.12 |  |  | RD |
| JDH4-02-007-CN-1730R |  | Road excavation [Road 07-N ] | 24d | 2026-02-17 A | 2026-03-04 A | JDH4-02-007-CN-1790, JDH4-02-007-CN-1710R | 100% | 2026-03-14 | 2026-04-13 | Excavator [82.5 h]; Loader [82.5 h]; Water Tanker [37.5 h]; Grider [157.5 h]; Truck [240 h]; Road Roller [157.5 h]; Labor [630 h]; Driver [315 h]; Eq. Operator [157.5 h]; Road excavation [631.95] | 16,658.08 | 16,658.08 |  |  | RD |
| JDH4-02-007-CN-1910 |  | Subgrade [Road 07-N ] | 14d | 2026-04-29 A | 2026-05-09 A | JDH4-02-007-CN-5550, JDH4-02-007-CN-4370 SS, JDH4-02-007-CN-3690 SS, JDH4-02-007-CN-2640 | 100% | 2026-05-31 | 2026-06-15 | Loader [20 h]; Water Tanker [40 h]; Grider [40 h]; Truck [40 h]; Road Roller [40 h]; Labor [240 h]; Driver [80 h]; Eq. Operator [80 h]; Subgrade [3547.65] | 120,233.76 |  | A1790 | RO | RD |
|  | 2 | **Asphalt Works** |  | 2026-05-07 | 2026-05-31 |  |  |  |  |  |  |  |  |  |  |
| JDH4-02-007-CN-1970 |  | Aggregate base course [Road 07-N ] | 15d | 2026-05-07 A | 2026-05-13 A | JDH4-02-007-CN-1910, JDH4-02-007-CN-4730 | 100% | 2026-08-17 | 2026-09-02 | Loader [31.5 h]; Water Tanker [63 h]; Grider [63 h]; Truck [63 h]; Road Roller [63 h]; Labor [63 h]; Driver [126 h]; Eq. Operator [210 h]; Aggregate base course [2365.1] | 122,460.38 |  | A1880 | RO | RD |
| JDH4-02-007-CN-2020 |  | Prime Coat (MC1) [Road 07-N ] | 10d | 2026-05-11 A | 2026-05-21 A | JDH4-02-007-CN-1970, JDH4-02-007-CN-1970 FF, JDH4-02-007-CN-4630, JDH4-02-007-CN-4630 FF, JDH4-02-007-CN-4350, JDH4-02-007-CN-4350 FF | 100% | 2026-09-03 | 2026-09-14 | Water Tanker [70 h]; Grider [70 h]; Truck [70 h]; Road Roller [70 h]; Asphalte Paver [70 h]; Labor [70 h]; Driver [140 h]; Eq. Operator [140 h]; Bituminous base course (Grading I - Class A), including Prime Coat (MC1) and tack coat (RC2) (if any) [117.25] | 68,436.53 |  | A1960 | RO | RD |
| JDH4-02-007-CN-2070 |  | Bituminous base course [Road 07-N ] | 15d | 2026-05-17 A | 2026-05-31 A | JDH4-02-007-CN-2020 | 100% | 2026-08-22 | 2026-09-07 | Water Tanker [83.3 h]; Truck [419.9 h]; Road Roller [419.9 h]; Asphalte Paver [83.3 h]; Labor [756 h]; Driver [504 h]; Eq. Operator [210 h]; Bituminous base course (Grading I - Class A), including Prime Coat (MC1) and tack coat (RC2) (if any) [1053.24] | 614,755.54 |  | A2020 | RO | RD |

| ID | WBS | Activity | Duration | Start | Finish | Predecessors | Complete | Planned start | Planned finish | Resources | Cost | Old Activity ID | JDH4-02-007 | Construction |
| --- | --- | --- | --- | --- | --- | --- | --- | --- | --- | --- | --- | --- | --- | --- |
|  | 7 | **Finishing Works** |  | 2026-05-24 | 2026-10-06 |  |  |  |  |  |  |  |  |  |
|  | 1 | **Asphalt Wearing Course** |  | 2026-09-09 | 2026-09-10 |  |  |  |  |  |  |  |  |  |
| JDH4-02-007-CN-2120 |  | Tack Coat (RC2) [Road 07-N ] | 15d | 2026-09-09 A | 2026-09-10 A | JDH4-02-007-CN-2070, JDH4-02-007-CN-2050, JDH4-02-007-CN-3250 | 100% | 2026-11-17 | 2026-12-05 | Water Tanker [75 h]; Grider [75 h]; Truck [75 h]; Road Roller [75 h]; Asphalte Paver [75 h]; Labor [75 h]; Driver [150 h]; Eq. Operator [150 h]; Bituminous concrete wearing course, (Grading I - Class A), including tack coat (RC2). [58.96] | 36,078.98 | A2100 | RO | RD |
| JDH4-02-007-CN-2170 |  | Bituminous concrete wearing course [Road 07-N ] | 9d | 2026-09-09 A | 2026-09-10 A | JDH4-02-007-CN-2120 | 100% | 2026-12-05 | 2026-12-15 | Water Tanker [27 h]; Truck [135 h]; Road Roller [135 h]; Asphalte Paver [27 h]; Labor [243 h]; Driver [162 h]; Eq. Operator [90 h]; Bituminous concrete wearing course, (Grading I - Class A), including tack coat (RC2). [533.32] | 326,350.77 | A2160 | RO | RD |
|  | 3 | **Precast Concrete Curb** |  | 2026-05-24 | 2026-07-02 |  |  |  |  |  |  |  |  |  |
| JDH4-02-007-CN-2220 |  | Installation of Precast Concrete curb [Road 07-N ] | 12d | 2026-05-24 A | 2026-07-02 A | JDH4-02-007-CN-2170 | 100% | 2026-10-13 | 2026-10-27 | Labor [480 h]; Skilled Labor [120 h]; Precast Concrete curb, Type (K4) [3817.66] | 225,534.37 | A2260 | RO | RD |
|  | 4 | **Precast Interlocking block pavers** |  | 2026-06-18 | 2026-07-30 |  |  |  |  |  |  |  |  |  |
| JDH4-02-007-CN-2270 |  | Installation of Interlocking block pavers for sidewalk/footpath [Road 07-N ] | 12d | 2026-06-18 A | 2026-07-30 A | JDH4-02-007-CN-2220 | 100% | 2026-11-05 | 2026-11-18 | Labor [1920 h]; Mason [120 h]; Interlocking block pavers for sidewalk/footpath [3037.78] | 214,487.01 | A2330 | RO | RD |
|  | 5 | **Pavement Markings** |  | 2026-09-24 | 2026-09-27 |  |  |  |  |  |  |  |  |  |
| JDH4-02-007-CN-2320 |  | Pavement markings [Road 07-N ] | 7d | 2026-09-24 A | 2026-09-27 A | JDH4-02-007-CN-2270, JDH4-02-007-CN-3710, JDH4-02-007-MS-1090, JDH4-02-007-PR-2990 | 100% | 2027-01-02 | 2027-01-09 | Labor [70 h]; Skilled Labor [70 h]; Retroreflective raised pavement markers (Type A) [1394.27] | 60,663.71 | A2450 | RO | RD |
|  | 6 | **Traffic Signage** |  | 2026-07-15 | 2026-10-06 |  |  |  |  |  |  |  |  |  |
| JDH4-02-007-CN-2370 |  | Installation of Traffic Signs [Road 07-N ] | 12d | 2026-07-15 A | 2026-10-06 A | JDH4-02-007-CN-2320, JDH4-02-007-CN-3710 | 100% | 2027-02-11 | 2027-02-25 | Labor [120 h]; Skilled Labor [120 h]; Traffic signs, ground mounted, Sheet Alumenium, (breakaway) Double post with all accessories according to the drawings and specifications. [26.8] | 103,584.27 | A2550 | RO | RD |
|  | 1 | **Storm Water Drainage** |  | 2026-03-02 | 2026-07-23 |  |  |  |  |  |  |  |  |  |
|  | 1 | **Pipe Works** |  | 2026-03-02 | 2026-03-28 |  |  |  |  |  |  |  |  |  |
| JDH4-02-007-CN-5350 |  | Excavation and Compaction (FDT) [Road 07-N ] | 24d | 2026-03-02 A | 2026-03-16 A | JDH4-02-007-CN-1790R | 100% | 2026-04-02 | 2026-04-30 | Excavator [80 h]; Water Tanker [80 h]; Truck [640 h]; Labor [1280 h]; Driver [960 h]; Eq. Operator [160 h]; Depth: 0.0m - 1.5m [762.46] | 64,933.15 | A8720 | STO | SD |
| JDH4-02-007-CN-5400 |  | Sand Bedding [Road 07-N ] | 15d | 2026-03-07 A | 2026-03-16 A | JDH4-02-007-CN-5350 | 100% | 2026-04-22 | 2026-05-10 | Loader [80 h]; Truck [160 h]; Labor [160 h]; Driver [160 h]; Eq. Operator [160 h]; Depth: 0.0m - 1.5m [762.46] | 32,466.61 | A8780 | STO | SD |
| JDH4-02-007-CN-5450 |  | Installation of GRP Pipe [Road 07-N ] | 16d | 2026-03-08 A | 2026-03-17 A | JDH4-02-007-CN-5400 | 100% | 2026-05-10 | 2026-06-01 | Excavator [160 h]; Crane [160 h]; Labor [480 h]; Eq. Operator [160 h]; Plumber [160 h]; Pipe-Laying Worker [160 h]; Depth: 2.01m - 2.5m [762.46] | 454,532.29 | A8840 | STO | SD |
| JDH4-02-007-CN-5500 |  | Sand Cover & Warning Tape [Road 07-N ] | 12d | 2026-03-09 A | 2026-03-25 A | JDH4-02-007-CN-5450 | 100% | 2026-06-01 | 2026-06-15 | Labor [120 h]; Skilled Labor [120 h]; Depth: 1.50m - 2.0m [762.46] | 32,466.61 | A8900 | STO | SD |
| JDH4-02-007-CN-5550 |  | Backfilling & Compaction [Road 07-N ] | 11d | 2026-03-09 A | 2026-03-28 A | JDH4-02-007-CN-5500, JDH4-02-007-CN-1790, JDH4-02-007-CN-1790R | 100% | 2026-06-15 | 2026-06-28 | Bulldozer [45 h]; Truck [120 h]; Compactor [36 h]; Labor [600 h]; Driver [120 h]; Eq. Operator [120 h]; Depth: 2.51m - 3.0m [762.46] | 64,933.15 | A8960 | STO | SD |
|  | 5 | **Pipe Encasement** |  | 2026-03-09 | 2026-03-25 |  |  |  |  |  |  |  |  |  |
| JDH4-02-007-CN-5820 |  | Pipe Encasement Works [Road 07-N ] | 10d | 2026-03-09 A | 2026-03-25 A | JDH4-02-007-CN-5450 | 100% | 2026-07-15 | 2026-07-26 | Labor [200 h]; Carpenter [50 h]; Mason [50 h]; Pipe encasement dia 500 mm [50.92] | 24,850.59 | A9630 | STO | SD |
|  | 2 | **Manholes** |  | 2026-03-05 | 2026-03-28 |  |  |  |  |  |  |  |  |  |
| JDH4-02-007-CN-5650 |  | Installation of Precast Manhole Ring [Road 07-N ] | 7d | 2026-03-05 A | 2026-03-28 A | JDH4-02-007-CN-5450 | 100% | 2026-06-01 | 2026-06-09 | Truck [70 h]; Compactor [21 h]; Skilled Labor [70 h]; Driver [70 h]; Eq. Operator [70 h]; Steel Fixer [70 h]; Mason [70 h]; Plumber [70 h]; MH depth 1.5 - 2.0m [4.69] | 130,787.16 | A9310 | STO | SD |
|  | 6 | **Precast Acces Openinig** |  | 2026-07-01 | 2026-07-23 |  |  |  |  |  |  |  |  |  |
| JDH4-02-007-CN-5700 |  | Installation of Precast Access Opening [Road 07-N ] | 3d | 2026-07-01 A | 2026-07-23 A | JDH4-02-007-CN-5650 | 100% | 2026-10-07 | 2026-10-10 | Labor [60 h]; Skilled Labor [30 h]; Cover with dimensions1000*1000 mm at variable depth including frame [2.68] | 7,569.02 | A9390 | STO | SD |

| ID | WBS | Activity | Duration | Start | Finish | Predecessors | Complete | Planned start | Planned finish | Resources | Cost | Old Activity ID | JDH4-02-007 | Construction |
| --- | --- | --- | --- | --- | --- | --- | --- | --- | --- | --- | --- | --- | --- | --- |
|  | 3 | **Catch Basins** |  | 2026-04-12 | 2026-05-02 |  |  |  |  |  |  |  |  |  |
| JDH4-02-007-CN-5740 |  | Construction of Catch basins [Road 07-N ] | 10d | 2026-04-12 A | 2026-05-02 A | JDH4-02-007-CN-5700, JDH4-02-007-CN-5820 | 100% | 2026-04-27 | 2026-05-07 | Truck [90 h]; Compactor [27 h]; Skilled Labor [90 h]; Driver [90 h]; Eq. Operator [90 h]; Steel Fixer [90 h]; Mason [90 h]; Plumber [90 h]; Double Catch basin [12.06] | 73,797.91 | A9470 | STO | SD |
|  | 4 | **Concrete Outfalls** |  | 2026-05-21 | 2026-07-08 |  |  |  |  |  |  |  |  |  |
| JDH4-02-007-CN-5770 |  | Construction of Concrete outfall structure [Road 07-N ] | 10d | 2026-05-21 A | 2026-07-08 A | JDH4-02-007-CN-5740, JDH4-02-007-CN-5820, JDH4-02-007-CN-5550, JDH4-02-007-CN-5550 FF | 100% | 2026-06-22 | 2026-07-02 | Skilled Labor [80 h]; Carpenter [80 h]; Steel Fixer [80 h]; Mason [80 h]; Concrete outfall structure [1.34] | 50,460.11 | A9520 | STO | SD |
|  | 2 | **Sewerage Network** |  | 2026-03-02 | 2026-03-28 |  |  |  |  |  |  |  |  |  |
|  | 1 | **Pipe Works** |  | 2026-03-02 | 2026-03-26 |  |  |  |  |  |  |  |  |  |
| JDH4-02-007-CN-4800 |  | Excavation & Compaction (FDT) [Road 07-N ] | 21d | 2026-03-02 A | 2026-03-15 A | JDH4-02-007-CN-5350 | 100% | 2026-04-30 | 2026-05-25 | Excavator [75 h]; Water Tanker [49.5 h]; Truck [390 h]; Labor [780 h]; Driver [585 h]; Eq. Operator [150 h]; Depth : 0.0m - 1.5m [444.21] | 32,610.3 | A7520 | SEW | SW |
| JDH4-02-007-CN-4870 |  | Sand Bedding [Road 07-N ] | 9d | 2026-03-04 A | 2026-03-16 A | JDH4-02-007-CN-4800 | 100% | 2026-05-17 | 2026-05-31 | Loader [45 h]; Truck [90 h]; Labor [90 h]; Driver [90 h]; Eq. Operator [90 h]; Depth : 1.51m - 2.5m [444.21] | 16,305.13 | A7600 | SEW | SW |
| JDH4-02-007-CN-4940 |  | Installation of GRP Pipe [Road 07-N ] | 12d | 2026-03-07 A | 2026-03-17 A | JDH4-02-007-CN-4870 | 100% | 2026-05-31 | 2026-06-14 | Loader [60 h]; Truck [120 h]; Labor [120 h]; Driver [120 h]; Eq. Operator [120 h]; Depth > 2.5 m [444.21] | 163,051.46 | A7680 | SEW | SW |
| JDH4-02-007-CN-5010 |  | Gravity Test [Road 07-N ] | 5d | 2026-03-09 A | 2026-03-24 A | JDH4-02-007-CN-4940 | 100% | 2026-06-14 | 2026-06-20 | Excavator [50 h]; Crane [50 h]; Labor [150 h]; Eq. Operator [50 h]; Plumber [50 h]; Pipe-Laying Worker [50 h]; Depth: 0.0m - 1.5m [444.21] | 65,220.6 | A7760 | SEW | SW |
| JDH4-02-007-CN-5080 |  | Sand Cover & Warning Tape [Road 07-N ] | 7d | 2026-03-09 A | 2026-03-25 A | JDH4-02-007-CN-5010 | 100% | 2026-06-20 | 2026-06-28 | Labor [70 h]; Skilled Labor [70 h]; Depth: 1.51m - 2.5m [444.21] | 16,305.13 | A7840 | SEW | SW |
| JDH4-02-007-CN-5150 |  | Backfilling & Compaction [Road 07-N ] | 8d | 2026-03-09 A | 2026-03-26 A | JDH4-02-007-CN-5080, JDH4-02-007-CN-5550 | 100% | 2026-06-28 | 2026-07-07 | Bulldozer [45 h]; Truck [120 h]; Compactor [36 h]; Labor [600 h]; Driver [120 h]; Eq. Operator [120 h]; Depth > 2.5 m [444.21] | 32,610.3 | A7920 | SEW | SW |
|  | 5 | **Pipe Encasement** |  | 2026-03-09 | 2026-03-25 |  |  |  |  |  |  |  |  |  |
| JDH4-02-007-CN-5290 |  | Pipe Encasement Works [Road 07-N ] | 5d | 2026-03-09 A | 2026-03-25 A | JDH4-02-007-CN-4940 | 100% | 2026-07-15 | 2026-07-20 | Labor [200 h]; Carpenter [50 h]; Mason [50 h]; Pipe encasement dia 150 mm [7.37] | 1,673.19 | A8230 | SEW | SW |
|  | 2 | **Manholes** |  | 2026-03-04 | 2026-03-28 |  |  |  |  |  |  |  |  |  |
| JDH4-02-007-CN-5220 |  | Installation of Manholes [Road 07-N ] | 7d | 2026-03-04 A | 2026-03-28 A | JDH4-02-007-CN-5290 | 100% | 2026-06-20 | 2026-06-28 | Truck [70 h]; Compactor [21 h]; Skilled Labor [70 h]; Driver [70 h]; Eq. Operator [70 h]; Steel Fixer [70 h]; Mason [70 h]; Plumber [70 h]; MH depth 2.51 - 3.5m with back drop [6.7] | 162,208.24 | A8110 | SEW | SW |
|  | 3 | **TSE Network** |  | 2026-03-03 | 2026-05-09 |  |  |  |  |  |  |  |  |  |
|  | 1 | **Pipe Works** |  | 2026-03-03 | 2026-03-31 |  |  |  |  |  |  |  |  |  |
| JDH4-02-007-CN-4020 |  | Excavation and Compaction (FDT) [Road 07-N ] | 15d | 2026-03-03 A | 2026-03-07 A | JDH4-02-007-CN-4800 | 100% | 2026-04-08 | 2026-04-26 | Excavator [90 h]; Water Tanker [68.4 h]; Truck [540 h]; Labor [1080 h]; Driver [810 h]; Eq. Operator [180 h]; Depth: 0.0m - 1.5m [576.2] | 20,576.51 | A6020 | TSE | TSE |
| JDH4-02-007-CN-4090 |  | Sand Bedding [Road 07-N ] | 12d | 2026-03-08 A | 2026-03-10 A | JDH4-02-007-CN-4020 | 100% | 2026-04-26 | 2026-05-10 | Loader [60 h]; Truck [120 h]; Labor [120 h]; Driver [120 h]; Eq. Operator [120 h]; Depth: 1.51m - 2.5m [576.2] | 10,288.28 | A6100 | TSE | TSE |
| JDH4-02-007-CN-4160 |  | Installation of HDPE Pipe [Road 07-N ] | 15d | 2026-03-11 A | 2026-03-28 A | JDH4-02-007-CN-4090, JDH4-02-007-CN-5010 | 100% | 2026-05-10 | 2026-05-31 | Excavator [150 h]; Crane [150 h]; Labor [450 h]; Eq. Operator [150 h]; Plumber [150 h]; Pipe-Laying Worker [150 h]; Depth > 2.5 m [576.2] | 102,882.58 | A6180 | TSE | TSE |
| JDH4-02-007-CN-4230 |  | Initial Pressure Test [Road 07-N ] | 5d | 2026-03-24 A | 2026-03-30 A | JDH4-02-007-CN-4160 | 100% | 2026-05-31 | 2026-06-06 | Labor [50 h]; Skilled Labor [50 h]; Depth: 0.0m - 1.5m [576.2] | 41,153.01 | A6260 | TSE | TSE |
| JDH4-02-007-CN-4370 |  | Backfilling & Compaction [Road 07-N ] | 12d | 2026-03-26 A | 2026-03-31 A | JDH4-02-007-CN-4300, JDH4-02-007-CN-5220, JDH4-02-007-CN-5150 | 100% | 2026-06-14 | 2026-06-28 | Bulldozer [90 h]; Truck [180 h]; Compactor [54 h]; Labor [900 h]; Driver [180 h]; Eq. Operator [120 h]; Depth: 0.0m - 1.5m [576.2] | 20,576.51 | A6420 | TSE | TSE |
| JDH4-02-007-CN-4300 |  | Sand Cover & Warning [Road 07-N ] | 7d | 2026-03-28 A | 2026-03-30 A | JDH4-02-007-CN-4230 | 100% | 2026-06-06 | 2026-06-14 | Labor [60 h]; Skilled Labor [60 h]; Depth > 1.5 m [576.2] | 10,288.28 | A6340 | TSE | TSE |
| JDH4-02-007-CN-4680 |  | Point of Connection [Road 07-N ] | 2d | 2026-03-30 A | 2026-03-31 A | JDH4-02-007-CN-4160, JDH4-02-007-CN-4650, JDH4-02-007-CN-5770, JDH4-02-007-CN-5770 FF, JDH4-02-007-CN-3900 | 100% | 2026-10-10 | 2026-10-12 | Labor [20 h]; Plumber [20 h]; Pipe-Laying Worker [20 h]; POC with dia 90 mm [1.34] | 8,311.08 | A7230 | TSE | TSE |

| ID | WBS | Activity | Duration | Start | Finish | Predecessors | Complete | Planned start | Planned finish | Resources | Cost | Old Activity ID | JDH4-02-007 | Construction |
| --- | --- | --- | --- | --- | --- | --- | --- | --- | --- | --- | --- | --- | --- | --- |
|  | 2 | **Pipe Encasement** |  | 2026-03-28 | 2026-03-30 |  |  |  |  |  |  |  |  |  |
| JDH4-02-007-CN-4440 |  | Encasement for Pipes [Road 07-N ] | 4d | 2026-03-28 A | 2026-03-30 A | JDH4-02-007-CN-4160 | 100% | 2026-07-15 | 2026-07-19 | Labor [160 h]; Carpenter [40 h]; Mason [40 h]; Pipe encasement dia 250 mm [43.55] | 9,821.37 | A6580 | TSE | TSE |
|  | 3 | **Valves** |  | 2026-04-15 | 2026-05-09 |  |  |  |  |  |  |  |  |  |
| JDH4-02-007-CN-4510 |  | Installation of Gate Valves [Road 07-N ] | 7d | 2026-04-15 A | 2026-05-09 A | JDH4-02-007-CN-4160, JDH4-02-007-CN-4440, JDH4-02-007-CN-4720, JDH4-02-007-CN-4730, JDH4-02-007-PR-1930, JDH4-02-007-CN-4530, JDH4-02-007-CN-4680 | 100% | 2026-12-05 | 2026-12-12 | Labor [70 h]; Skilled Labor [70 h]; Pipe-Laying Worker [70 h]; Gate valves dia (250) mm on pipe dia (250) mm . [1.34] | 7,469.42 | A6730 | TSE | TSE |
|  | 4 | **Risers** |  | 2026-03-24 | 2026-03-30 |  |  |  |  |  |  |  |  |  |
| JDH4-02-007-CN-4750 |  | Installation of Irrigation Riser with [Road 07-N ] | 5d | 2026-03-24 A | 2026-03-30 A | JDH4-02-007-CN-4510 SS, JDH4-02-007-CN-4440 | 100% | 2026-12-10 | 2026-12-16 | Labor [50 h]; Skilled Labor [50 h]; Pipe-Laying Worker [50 h]; Irrigation Riser with [2.01] | 13,245.78 | A7310 | TSE | TSE |
|  | 4 | **Potable Network** |  | 2026-03-02 | 2026-04-20 |  |  |  |  |  |  |  |  |  |
|  | 1 | **Pipe Works** |  | 2026-03-02 | 2026-03-31 |  |  |  |  |  |  |  |  |  |
| JDH4-02-007-CN-3340 |  | Excavation and Compaction (FDT) [Road 07-N ] | 9d | 2026-03-02 A | 2026-03-08 A | JDH4-02-007-CN-4020 | 100% | 2026-04-08 | 2026-04-19 | Excavator [60 h]; Water Tanker [120 h]; Truck [240 h]; Labor [480 h]; Driver [120 h]; Eq. Operator [120 h]; Depth: 0.0m - 1.5m [304.85] | 9,814.34 | A4380 | POT | PW |
| JDH4-02-007-CN-3410 |  | Sand Bedding [Road 07-N ] | 7d | 2026-03-04 A | 2026-03-11 A | JDH4-02-007-CN-3340 | 100% | 2026-04-19 | 2026-04-27 | Loader [35 h]; Truck [70 h]; Labor [70 h]; Driver [70 h]; Eq. Operator [70 h]; Depth: 1.51m - 2.5m [304.85] | 4,907.17 | A4460 | POT | PW |
| JDH4-02-007-CN-3480 |  | Installation of HDPE Pipe [Road 07-N ] | 12d | 2026-03-11 A | 2026-03-26 A | JDH4-02-007-CN-3410 | 100% | 2026-04-27 | 2026-05-11 | Excavator [120 h]; Crane [120 h]; Labor [360 h]; Eq. Operator [120 h]; Plumber [120 h]; Pipe-Laying Worker [120 h]; Depth: > 2.5 [304.85] | 49,071.64 | A4540 | POT | PW |
| JDH4-02-007-CN-3550 |  | Initial Pressure Test [Road 07-N ] | 5d | 2026-03-25 A | 2026-03-26 A | JDH4-02-007-CN-3480 | 100% | 2026-05-11 | 2026-05-17 | Labor [50 h]; Skilled Labor [50 h]; Depth: 0.0m - 1.5m [304.85] | 19,628.65 | A4620 | POT | PW |
| JDH4-02-007-CN-3620 |  | Sand Cover & Warning Tape [Road 07-N ] | 6d | 2026-03-25 A | 2026-03-28 A | JDH4-02-007-CN-3550 | 100% | 2026-05-17 | 2026-05-24 | Labor [50 h]; Skilled Labor [50 h]; Depth: > 1.5m [304.85] | 4,907.17 | A4700 | POT | PW |
| JDH4-02-007-CN-3690 |  | Backfilling [Road 07-N ] | 12d | 2026-03-25 A | 2026-03-31 A | JDH4-02-007-CN-3620, JDH4-02-007-CN-4440 | 100% | 2026-05-24 | 2026-06-10 | Bulldozer [45 h]; Truck [120 h]; Compactor [36 h]; Labor [600 h]; Driver [120 h]; Eq. Operator [120 h]; Depth: 1.51m - 2.5m [304.85] | 9,814.34 | A4780 | POT | PW |
|  | 2 | **Pipe Encasement** |  | 2026-03-25 | 2026-03-28 |  |  |  |  |  |  |  |  |  |
| JDH4-02-007-CN-3760 |  | Encasement for Pipes [Road 07-N ] | 5d | 2026-03-25 A | 2026-03-28 A | JDH4-02-007-CN-3480 | 100% | 2026-07-15 | 2026-07-20 | Labor [200 h]; Carpenter [50 h]; Mason [50 h]; Pipe encasement diameter 315 mm [36.85] | 7,696.98 | A4920 | POT | PW |
|  | 3 | **Valves** |  | 2026-03-10 | 2026-03-26 |  |  |  |  |  |  |  |  |  |
| JDH4-02-007-CN-3830 |  | Installation of Gate Valves [Road 07-N ] | 7d | 2026-03-10 A | 2026-03-26 A | JDH4-02-007-CN-3480 | 100% | 2026-04-08 | 2026-04-16 | Labor [70 h]; Skilled Labor [70 h]; Pipe-Laying Worker [70 h]; Gate valves dia (150) mm on pipe dia (160) mm . [1.34] | 5,256.26 | A5060 | POT | PW |
|  | 4 | **Fire Hydrant** |  | 2026-04-15 | 2026-04-20 |  |  |  |  |  |  |  |  |  |
| JDH4-02-007-CN-3920 |  | Installation of 3-outlet fire hydrant [Road 07-N ] | 7d | 2026-04-15 A | 2026-04-20 A | JDH4-02-007-CN-3830, JDH4-02-007-CN-3760, JDH4-02-007-CN-5220 | 100% | 2026-04-28 | 2026-05-05 | Labor [70 h]; Skilled Labor [70 h]; Pipe-Laying Worker [70 h]; 3-outlet fire hydrant [6.03] | 56,767.63 | A5300 | POT | PW |
|  | 5 | **Electrical Works** |  | 2026-04-12 | 2026-10-03 |  |  |  |  |  |  |  |  |  |
|  | 1 | **LV Cables** |  | 2026-07-15 | 2026-08-06 |  |  |  |  |  |  |  |  |  |
|  | 2 | **Low Voltage Cable** |  | 2026-07-15 | 2026-08-06 |  |  |  |  |  |  |  |  |  |
| JDH4-02-007-CN-2630 |  | Excavation for Low Voltage Cable [Road 07-N ] | 10d | 2026-07-15 A | 2026-08-05 A | JDH4-02-007-CN-4020 | 100% | 2026-07-15 | 2026-07-26 | Excavator [50 h]; Truck [100 h]; Labor [100 h]; Driver [100 h]; Eq. Operator [100 h]; Excavation for Low Voltage Cable [166.16] | 9,385.58 | A3045 | STL | EW |
| JDH4-02-007-CN-2640 |  | Installation of Low Voltage Cables [Road 07-N ] | 8d | 2026-07-18 A | 2026-08-06 A | JDH4-02-007-CN-2630 | 100% | 2026-07-27 | 2026-08-04 | Excavator [40 h]; Truck [40 h]; Bobcat [40 h]; Compactor [12 h]; Labor [80 h]; Driver [40 h]; Eq. Operator [120 h]; Electrician [40 h]; Cables, Copper, (4Cx50mm²,Cu/XLPE/SWA/PVC + 1x25mm² PVC/ECC). [109.21] | 25,690.78 | A3050 | STL | EW |

| ID | WBS | Activity | Duration | Start | Finish | Predecessors | Complete | Planned start | Planned finish | Resources | Cost | Old Activity ID | JDH4-02-007 | Construction |
| --- | --- | --- | --- | --- | --- | --- | --- | --- | --- | --- | --- | --- | --- | --- |
|  | 3 | **Street Lighting** |  | 2026-04-16 | 2026-10-03 |  |  |  |  |  |  |  |  |  |
| JDH4-02-007-CN-2790 |  | Installation of Road Crossing Ducts [Road 07-N ] | 12d | 2026-04-16 A | 2026-04-23 A | JDH4-02-007-CN-2780 | 100% | 2026-05-30 | 2026-06-11 | Truck [120 h]; Bobcat [120 h]; Compactor [36 h]; Labor [120 h]; Driver [120 h]; Eq. Operator [120 h]; Carpenter [120 h]; Steel Fixer [120 h]; Mason [120 h]; Electrician [120 h]; Road crossing ducts, 4 way (2 x 2 x100mm PVC) [46.9] | 17,204.29 | A3305 | STL | EW |
| JDH4-02-007-CN-2940 |  | Installation of Lighting Luminaires [Road 07-N ] | 8d | 2026-06-09 A | 2026-07-23 A | JDH4-02-007-CN-2900 | 100% | 2026-12-07 | 2026-12-16 | Crane [80 h]; Labor [240 h]; Skilled Labor [160 h]; Eq. Operator [80 h]; Electrician [80 h]; Street Lighting ( LED) Luminaire,of Output? 6730 lumen complete with control gear and lamp, (45) WATT, 230 Volt, 60 HZ [30.82] | 22,897.48 | A3530 | STL | EW |
| JDH4-02-007-CN-2900 |  | Installation of Lighting Poles [Road 07-N ] | 16d | 2026-06-10 A | 2026-07-23 A | JDH4-02-007-CN-2070, JDH4-02-007-CN-2840, JDH4-02-007-CN-2860, JDH4-02-007-CN-3920, JDH4-02-007-CN-4680, JDH4-02-007-CN-2860 FF, JDH4-02-007-CN-3920 FF | 100% | 2026-11-18 | 2026-12-07 | Excavator [160 h]; Truck [160 h]; Crane [160 h]; Labor [480 h]; Driver [160 h]; Eq. Operator [320 h]; Carpenter [160 h]; Steel Fixer [160 h]; Mason [160 h]; Electrician [160 h]; Lighting poles with two arm, height of ( 7 ) meters, including the power distribution box, cables , and RCC foundation. [30.82] | 96,197.32 | A3450 | STL | EW |
| JDH4-02-007-CN-2780 |  | Excavation for Low Voltage Cable [Road 07-N ] | 13d | 2026-06-18 A | 2026-08-08 A | JDH4-02-007-CN-2630 | 100% | 2026-07-06 | 2026-07-20 | Excavator [70 h]; Truck [280 h]; Labor [1120 h]; Driver [280 h]; Eq. Operator [140 h]; Excavation for Low Voltage Cable [458.95] | 17,282.59 | A3300 | STL | EW |
| JDH4-02-007-CN-2860 |  | Installation of Low Voltage Cables [Road 07-N ] | 18d | 2026-06-20 A | 2026-08-10 A | JDH4-02-007-CN-2790, JDH4-02-007-CN-2640 | 100% | 2026-07-21 | 2026-08-10 | Excavator [414 h]; Truck [414 h]; Bobcat [414 h]; Compactor [124.2 h]; Labor [828 h]; Driver [414 h]; Eq. Operator [1242 h]; Electrician [180 h]; Low Voltage Cables [1560.43] | 88,141.2 | A3370 | STL | EW |
| JDH4-02-007-CN-3000 |  | Installation of Street Lighting Feeder pillars [Road 07-N ] | 8d | 2026-06-30 A | 2026-10-03 A | JDH4-02-007-CN-2940 | 100% | 2026-11-29 | 2026-12-07 | Labor [40 h]; Skilled Labor [40 h]; Electrician [40 h]; Street Lighting Feeder pillars [0.67] | 22,076.3 | A3740 | STL | EW |
| JDH4-02-007-CN-3010 |  | Installation of Earthing System [Road 07-N ] | 8d | 2026-09-17 A | 2026-10-03 A | JDH4-02-007-CN-3000 | 100% | 2026-10-25 | 2026-11-02 | Labor [40 h]; Electrician [40 h]; Including earthing of lighting poles ,masts. feeder pillars , Unit substations, L.V feeders and KWH meter. [0.67] | 3,784.51 | A3745 | STL | EW |
|  | 2 | **Telecommunication** |  | 2026-04-12 | 2026-08-10 |  |  |  |  |  |  |  |  |  |
| JDH4-02-007-CN-3090 |  | Installation Road Crossing R/F 6 way 50mm HDPE Pipe [Road 07-N ] | 12d | 2026-04-12 A | 2026-07-16 A | JDH4-02-007-CN-2780 | 100% | 2026-05-30 | 2026-06-11 | Truck [160 h]; Bobcat [160 h]; Compactor [48 h]; Labor [160 h]; Driver [160 h]; Eq. Operator [160 h]; Carpenter [160 h]; Steel Fixer [160 h]; Mason [160 h]; Electrician [160 h]; Installation Road Crossing R/F 6 way 50mm HDPE Pipe [514.56] | 145,325.12 | A3870 | TEL | EW |
| JDH4-02-007-CN-3160 |  | Installation Road Crossing Un R/F 6 way 50mm HDPE Pipe [Road 07-N ] | 12d | 2026-04-16 A | 2026-05-06 A | JDH4-02-007-CN-3090 | 100% | 2026-06-13 | 2026-06-25 | Truck [30 h]; Bobcat [30 h]; Compactor [9 h]; Labor [30 h]; Driver [30 h]; Eq. Operator [30 h]; Carpenter [30 h]; Steel Fixer [30 h]; Mason [30 h]; Electrician [30 h]; Installation Road Crossing Un R/F 6 way 50mm HDPE Pipe [9.38] | 3,973.73 | A3960 | TEL | EW |
| JDH4-02-007-CN-3270 |  | Installation of Manholes [Road 07-N ] | 12d | 2026-05-28 A | 2026-06-03 A | JDH4-02-007-CN-3210, JDH4-02-007-CN-2860 | 100% | 2026-08-18 | 2026-08-31 | Truck [40 h]; Compactor [12 h]; Skilled Labor [40 h]; Driver [40 h]; Eq. Operator [40 h]; Steel Fixer [40 h]; Mason [40 h]; Plumber [40 h]; Manhole type 2 (1500*1200*1200) mm [4.69] | 39,737.34 | A4130 | TEL | EW |
| JDH4-02-007-CN-3210 |  | Installation of 2 x 32 mm diameter HDPE ducts [Road 07-N ] | 12d | 2026-08-08 A | 2026-08-10 A | JDH4-02-007-CN-3160, JDH4-02-007-CN-2640, JDH4-02-007-CN-3920 | 100% | 2026-08-08 | 2026-08-22 | Truck [150 h]; Bobcat [150 h]; Compactor [45 h]; Labor [150 h]; Driver [150 h]; Eq. Operator [150 h]; Carpenter [150 h]; Steel Fixer [150 h]; Mason [150 h]; Electrician [150 h]; 2 x 32 mm diameter HDPE ducts [471.68] | 62,166.86 | A4030 | TEL | EW |
|  | 3 | **Road 01** |  | 2026-01-07 | 2026-11-03 |  |  |  |  |  |  |  |  |  |
|  | 6 | **Road Works (Roundabout)** |  | 2026-07-15 | 2026-11-03 |  |  |  |  |  |  |  |  |  |
|  | 1 | **Eartworks & Site grading** |  | 2026-07-15 | 2026-07-28 |  |  |  |  |  |  |  |  |  |
| JDH4-02-007-CN-1720 |  | Road excavation [Road 01 ] | 10d | 2026-07-15 A | 2026-07-19 A | JDH4-02-007-CN-1730 | 100% | 2026-07-15 | 2026-07-26 | Excavator [50 h]; Loader [50 h]; Water Tanker [25 h]; Grider [100 h]; Truck [150 h]; Road Roller [100 h]; Labor [400 h]; Driver [200 h]; Eq. Operator [100 h]; Road excavation [305.52] | 8,053.45 | A1490 | RO | RD |
| JDH4-02-007-CN-1780 |  | Road backfilling [Road 01 ] | 7d | 2026-07-20 A | 2026-07-23 A | JDH4-02-007-CN-1720 | 100% | 2026-07-27 | 2026-08-03 | Loader [75 h]; Bulldozer [150 h]; Water Tanker [37.5 h]; Grider [150 h]; Truck [450 h]; Road Roller [150 h]; Driver [450 h]; Eq. Operator [150 h]; Road backfilling [13502.5] | 317,788.32 | A1570 | RO | RD |
| JDH4-02-007-CN-1900 |  | Subgrade [Road 01 ] | 7d | 2026-07-25 A | 2026-07-28 A | JDH4-02-007-CN-5540, JDH4-02-007-CN-5140, JDH4-02-007-CN-4360, JDH4-02-007-CN-2850, JDH4-02-007-CN-2620 | 100% | 2026-11-09 | 2026-11-16 | Loader [17.5 h]; Water Tanker [35 h]; Grider [35 h]; Truck [35 h]; Road Roller [35 h]; Labor [210 h]; Driver [70 h]; Eq. Operator [70 h]; Subgrade [942.69] | 31,948.8 | A1780 | RO | RD |
|  | 2 | **Asphalt Works** |  | 2026-07-29 | 2026-08-30 |  |  |  |  |  |  |  |  |  |
| JDH4-02-007-CN-1960 |  | Aggregate base course [Road 01 ] | 10d | 2026-07-29 A | 2026-08-21 A | JDH4-02-007-CN-1900 | 100% | 2026-11-17 | 2026-11-28 | Loader [21 h]; Water Tanker [42 h]; Grider [42 h]; Truck [42 h]; Road Roller [42 h]; Labor [42 h]; Driver [84 h]; Eq. Operator [140 h]; Aggregate base course [628.46] | 32,540.46 | A1870 | RO | RD |
| JDH4-02-007-CN-2010 |  | Prime Coat (MC1) [Road 01 ] | 21d | 2026-08-02 A | 2026-08-29 A | JDH4-02-007-CN-1960 | 100% | 2026-11-29 | 2026-12-22 | Water Tanker [35 h]; Grider [35 h]; Truck [35 h]; Road Roller [35 h]; Asphalte Paver [35 h]; Labor [35 h]; Driver [70 h]; Eq. Operator [70 h]; Bituminous base course (Grading I - Class A), including Prime Coat (MC1) and tack coat (RC2) (if any) [30.82] | 17,989.03 | A1950 | RO | RD |
| JDH4-02-007-CN-2060 |  | Bituminous base course [Road 01 ] | 18d | 2026-08-04 A | 2026-08-30 A | JDH4-02-007-CN-2010 | 100% | 2026-11-26 | 2026-12-17 | Water Tanker [56 h]; Truck [280 h]; Road Roller [280 h]; Asphalte Paver [56 h]; Labor [504 h]; Driver [336 h]; Eq. Operator [140 h]; Bituminous base course (Grading I - Class A), including Prime Coat (MC1) and tack coat (RC2) (if any) [280.06] | 163,465.53 | A2010 | RO | RD |
|  | 7 | **Finishing Works** |  | 2026-09-23 | 2026-11-03 |  |  |  |  |  |  |  |  |  |
|  | 1 | **Asphalt Wearing Course** |  | 2026-10-07 | 2026-10-12 |  |  |  |  |  |  |  |  |  |
| JDH4-02-007-CN-2110 |  | Tack Coat (RC2) [Road 01 ] | 10d | 2026-10-07 A | 2026-10-08 A | JDH4-02-007-CN-2060 | 100% | 2026-10-14 | 2026-10-25 | Water Tanker [50 h]; Grider [50 h]; Truck [50 h]; Road Roller [50 h]; Asphalte Paver [50 h]; Labor [50 h]; Driver [100 h]; Eq. Operator [100 h]; Bituminous concrete wearing course, (Grading I - Class A), including tack coat (RC2). [15.41] | 9,429.73 | A2090 | RO | RD |
| JDH4-02-007-CN-2160 |  | Bituminous concrete wearing course [Road 01 ] | 15d | 2026-10-08 A | 2026-10-12 A | JDH4-02-007-CN-2110 | 100% | 2026-10-26 | 2026-11-11 | Water Tanker [45 h]; Truck [225 h]; Road Roller [225 h]; Asphalte Paver [45 h]; Labor [405 h]; Driver [270 h]; Eq. Operator [150 h]; Bituminous concrete wearing course, (Grading I - Class A), including tack coat (RC2). [141.37] | 86,507.55 | A2150 | RO | RD |

| ID | WBS | Activity | Duration | Start | Finish | Predecessors | Complete | Remaining | Planned start | Planned finish | Total float | Free float | Resources | Cost | Old Activity ID | JDH4-02-007 | Construction |
| --- | --- | --- | --- | --- | --- | --- | --- | --- | --- | --- | --- | --- | --- | --- | --- | --- | --- |
|  | 3 | **Precast Concrete Curb** |  | 2026-09-23 | 2026-10-06 |  |  |  |  |  |  |  |  |  |  |  |  |
| JDH4-02-007-CN-2210 |  | Installation of Precast Concrete curb [Road 01 ] | 8d | 2026-09-23 A | 2026-10-06 A | JDH4-02-007-CN-2160 | 100% |  | 2026-11-12 | 2026-11-21 |  |  | Labor [160 h]; Skilled Labor [40 h]; Precast Concrete curb, Type (K2) [1014.38] | 59,926.12 | A2250 | RO | RD |
|  | 4 | **Precast Interlocking block pavers** |  | 2026-09-23 | 2026-09-24 |  |  |  |  |  |  |  |  |  |  |  |  |
| JDH4-02-007-CN-2260 |  | Installation of Interlocking block pavers for sidewalk/footpath [Road 01 ] | 4d | 2026-09-23 A | 2026-09-24 A | JDH4-02-007-CN-2210 | 100% |  | 2026-11-22 | 2026-11-25 |  |  | Labor [320 h]; Mason [40 h]; Interlocking block pavers for sidewalk/footpath [807.35] | 57,004.16 | A2320 | RO | RD |
|  | 5 | **Pavement Markings** |  | 2026-10-17 | 2026-10-19 |  |  |  |  |  |  |  |  |  |  |  |  |
| JDH4-02-007-CN-2310 |  | Pavement markings [Road 01 ] | 4d | 2026-10-17 A | 2026-10-19 A | JDH4-02-007-CN-2220 | 100% |  | 2026-10-21 | 2026-10-25 |  |  | Labor [20 h]; Skilled Labor [20 h]; Retroreflective Thermoplastic Yellow Traffic lines [371.18] | 16,149.78 | A2440 | RO | RD |
|  | 6 | **Traffic Signage** |  | 2026-10-19 | 2026-11-03 |  |  |  |  |  |  |  |  |  |  |  |  |
| JDH4-02-007-CN-2360 |  | Installation of Traffic Signs [Road 01 ] | 12d | 2026-10-19 A | 2026-11-03 | JDH4-02-007-CN-2310 | 30% | 12d | 2026-10-21 | 2026-11-03 | 140d | 0d | Labor [120 h]; Skilled Labor [120 h]; Traffic signs, ground mounted, 2 Sheet Alumenium, (breakaway)Single post, with all accessories according to the drawings and specifications. [6.7] | 25,896.07 | A2540 | RO | RD |
|  | 1 | **Storm Water Drainage** |  | 2026-05-13 | 2026-08-26 |  |  |  |  |  |  |  |  |  |  |  |  |
|  | 1 | **Pipe Works** |  | 2026-05-13 | 2026-06-18 |  |  |  |  |  |  |  |  |  |  |  |  |
| JDH4-02-007-CN-5340 |  | Excavation and Compaction (FDT) [Road 01 ] | 12d | 2026-05-13 A | 2026-06-01 A | JDH4-02-007-CN-1780 | 100% |  | 2026-06-18 | 2026-07-01 |  |  | Excavator [35 h]; Water Tanker [17.5 h]; Truck [210 h]; Labor [280 h]; Driver [70 h]; Eq. Operator [70 h]; Depth > 1.5 m [30.82] | 2,624.71 | A8710 | STO | SD |
| JDH4-02-007-CN-5390 |  | Sand Bedding [Road 01 ] | 6d | 2026-05-16 A | 2026-06-02 A | JDH4-02-007-CN-5340 | 100% |  | 2026-07-02 | 2026-07-08 |  |  | Loader [30 h]; Truck [60 h]; Labor [60 h]; Driver [60 h]; Eq. Operator [60 h]; Depth > 2 m [30.82] | 1,312.36 | A8770 | STO | SD |
| JDH4-02-007-CN-5440 |  | Installation of GRP Pipe [Road 01 ] | 5d | 2026-05-21 A | 2026-06-04 A | JDH4-02-007-CN-5390 | 100% |  | 2026-07-09 | 2026-07-14 |  |  | Excavator [25 h]; Crane [50 h]; Labor [150 h]; Eq. Operator [50 h]; Plumber [50 h]; Pipe-Laying Worker [50 h]; Depth: 1.51m - 2.0m [30.82] | 18,373.01 | A8830 | STO | SD |
| JDH4-02-007-CN-5490 |  | Sand Cover & Warning Tape [Road 01 ] | 6d | 2026-05-23 A | 2026-06-17 A | JDH4-02-007-CN-5440 | 100% |  | 2026-07-15 | 2026-07-21 |  |  | Labor [60 h]; Skilled Labor [60 h]; Depth > 2.5m [30.82] | 1,312.36 | A8890 | STO | SD |
| JDH4-02-007-CN-5540 |  | Backfilling & Compaction [Road 01 ] | 5d | 2026-05-24 A | 2026-06-18 A | JDH4-02-007-CN-5490, JDH4-02-007-CN-1780 | 100% |  | 2026-07-22 | 2026-07-27 |  |  | Bulldozer [37.5 h]; Truck [50 h]; Compactor [50 h]; Labor [250 h]; Driver [50 h]; Eq. Operator [50 h]; Depth: 2.01m - 2.5m [30.82] | 2,624.71 | A8950 | STO | SD |
|  | 5 | **Pipe Encasement** |  | 2026-05-23 | 2026-06-17 |  |  |  |  |  |  |  |  |  |  |  |  |
| JDH4-02-007-CN-5810 |  | Pipe Encasement Works [Road 01 ] | 4d | 2026-05-23 A | 2026-06-17 A | JDH4-02-007-CN-5440 | 100% |  | 2026-08-04 | 2026-08-08 |  |  | Labor [120 h]; Carpenter [30 h]; Mason [30 h]; Pipe encasement dia 400 mm [2.68] | 1,307.93 | A9620 | STO | SD |
|  | 2 | **Manholes** |  | 2026-05-16 | 2026-06-13 |  |  |  |  |  |  |  |  |  |  |  |  |
| JDH4-02-007-CN-5640 |  | Installation of Precast Manhole Ring [Road 01 ] | 6d | 2026-05-16 A | 2026-06-13 A | JDH4-02-007-CN-5810 | 100% |  | 2026-07-06 | 2026-07-12 |  |  | Truck [40 h]; Compactor [40 h]; Skilled Labor [40 h]; Driver [40 h]; Eq. Operator [40 h]; Steel Fixer [40 h]; Mason [40 h]; Plumber [40 h]; MH depth > 2 m [2.68] | 74,735.52 | A9300 | STO | SD |
|  | 6 | **Precast Acces Openinig** |  | 2026-08-05 | 2026-08-26 |  |  |  |  |  |  |  |  |  |  |  |  |
| JDH4-02-007-CN-5690 |  | Installation of Precast Access Opening [Road 01 ] | 6d | 2026-08-05 A | 2026-08-26 A | JDH4-02-007-CN-5640 | 100% |  | 2026-09-09 | 2026-09-15 |  |  | Labor [80 h]; Skilled Labor [40 h]; Cover with dimensions1000*1000 mm at variable depth including frame [1.34] | 3,784.51 | A9380 | STO | SD |
|  | 4 | **Concrete Outfalls** |  | 2026-08-06 | 2026-08-09 |  |  |  |  |  |  |  |  |  |  |  |  |
| JDH4-02-007-CN-5780 |  | Construction of Concrete outfall structure [Road 01 ] | 8d | 2026-08-06 A | 2026-08-09 A | JDH4-02-007-CN-5690, JDH4-02-007-CN-5540 | 100% |  | 2026-08-12 | 2026-08-20 |  |  | Skilled Labor [40 h]; Carpenter [40 h]; Steel Fixer [40 h]; Mason [40 h]; Concrete outfall structure [0.67] | 25,230.06 | A9530 | STO | SD |
|  | 2 | **Sewerage Network** |  | 2026-05-10 | 2026-06-29 |  |  |  |  |  |  |  |  |  |  |  |  |
|  | 1 | **Pipe Works** |  | 2026-05-20 | 2026-06-18 |  |  |  |  |  |  |  |  |  |  |  |  |
| JDH4-02-007-CN-4790 |  | Excavation & Compaction (FDT) [Road 01 ] | 10d | 2026-05-20 A | 2026-05-24 A | JDH4-02-007-CN-5340 | 100% |  | 2026-09-24 | 2026-10-05 |  |  | Excavator [50 h]; Water Tanker [25 h]; Truck [200 h]; Labor [400 h]; Driver [100 h]; Eq. Operator [100 h]; Depth : 0.0m - 1.5m [71.69] | 5,262.9 | A7510 | SEW | SW |
| JDH4-02-007-CN-4860 |  | Sand Bedding [Road 01 ] | 10d | 2026-05-25 A | 2026-05-28 A | JDH4-02-007-CN-4790 | 100% |  | 2026-10-06 | 2026-10-17 |  |  | Loader [50 h]; Truck [100 h]; Labor [100 h]; Driver [100 h]; Eq. Operator [100 h]; Depth : 1.51m - 2.5m [71.69] | 2,631.45 | A7590 | SEW | SW |
| JDH4-02-007-CN-4930 |  | Installation of GRP Pipe [Road 01 ] | 12d | 2026-05-30 A | 2026-06-04 A | JDH4-02-007-CN-4860 | 100% |  | 2026-10-18 | 2026-10-31 |  |  | Loader [60 h]; Truck [120 h]; Labor [120 h]; Driver [120 h]; Eq. Operator [120 h]; Depth > 2.5 m [71.69] | 26,314.49 | A7670 | SEW | SW |
| JDH4-02-007-CN-5000 |  | Gravity Test [Road 01 ] | 3d | 2026-06-06 A | 2026-06-08 A | JDH4-02-007-CN-4930, JDH4-02-007-CN-5540 | 100% |  | 2026-11-01 | 2026-11-03 |  |  | Excavator [15 h]; Crane [30 h]; Labor [90 h]; Eq. Operator [30 h]; Plumber [30 h]; Pipe-Laying Worker [30 h]; Depth: 0.0m - 1.5m [71.69] | 10,525.8 | A7750 | SEW | SW |
| JDH4-02-007-CN-5070 |  | Sand Cover & Warning Tape [Road 01 ] | 4d | 2026-06-09 A | 2026-06-13 A | JDH4-02-007-CN-5000 | 100% |  | 2026-11-04 | 2026-11-08 |  |  | Labor [40 h]; Skilled Labor [40 h]; Depth > 3.5 m [71.69] | 2,631.45 | A7830 | SEW | SW |
| JDH4-02-007-CN-5140 |  | Backfilling & Compaction [Road 01 ] | 6d | 2026-06-13 A | 2026-06-18 A | JDH4-02-007-CN-5070, JDH4-02-007-CN-5540 | 100% |  | 2026-11-09 | 2026-11-15 |  |  | Bulldozer [22.5 h]; Truck [60 h]; Compactor [18 h]; Labor [300 h]; Driver [60 h]; Eq. Operator [60 h]; Depth > 2.5 m [71.69] | 5,262.9 | A7910 | SEW | SW |

| ID | WBS | Activity | Duration | Start | Finish | Predecessors | Complete | Planned start | Planned finish | Resources | Cost | Actual cost | Old Activity ID | JDH4-02-007 | Construction |
| --- | --- | --- | --- | --- | --- | --- | --- | --- | --- | --- | --- | --- | --- | --- | --- |
|  | 5 | **Pipe Encasement** |  | 2026-05-28 | 2026-06-24 |  |  |  |  |  |  |  |  |  |  |
| JDH4-02-007-CN-5280 |  | Pipe Encasement Works [Road 01 ] | 4d | 2026-05-28 A | 2026-06-24 A | JDH4-02-007-CN-4930 | 100% | 2026-11-01 | 2026-11-04 | Labor [120 h]; Carpenter [30 h]; Mason [30 h]; Pipe encasement dia 250 mm [1.34] | 304.22 | 304.22 | A8220 | SEW | SW |
|  | 2 | **Manholes** |  | 2026-05-10 | 2026-06-29 |  |  |  |  |  |  |  |  |  |  |
| JDH4-02-007-CN-5210 |  | Installation of Manholes [Road 01 ] | 6d | 2026-05-10 A | 2026-06-29 A | JDH4-02-007-CN-5280 | 100% | 2026-11-05 | 2026-11-11 | Truck [50 h]; Compactor [15 h]; Skilled Labor [50 h]; Driver [50 h]; Eq. Operator [50 h]; Steel Fixer [50 h]; Mason [50 h]; Plumber [50 h]; MH depth 2.51 - 3.5m [3.35] | 81,104.12 |  | A8100 | SEW | SW |
|  | 3 | **TSE Network** |  | 2026-01-07 | 2026-07-02 |  |  |  |  |  |  |  |  |  |  |
|  | 1 | **Pipe Works** |  | 2026-01-07 | 2026-06-30 |  |  |  |  |  |  |  |  |  |  |
| JDH4-02-007-CN-4010 |  | Excavation and Compaction (FDT) [Road 01 ](Completed) | 22d | 2026-01-07 A | 2026-02-01 A | JDH4-02-007-CN-1710 | 100% |  |  | Excavator [75 h]; Water Tanker [57 h]; Truck [450 h]; Labor [900 h]; Driver [675 h]; Eq. Operator [150 h]; Depth: 0.0m - 1.5m [128.25] | 4,579.9 | 4,579.9 | A6010 | TSE | TSE |
| JDH4-02-007-CN-4150 |  | Installation of HDPE Pipe [Road 01 ](Completed) | 21d | 2026-01-08 A | 2026-02-01 A | JDH4-02-007-CN-4080 SS, JDH4-02-007-CN-4080 FF | 100% |  |  | Excavator [60 h]; Crane [120 h]; Labor [360 h]; Eq. Operator [120 h]; Plumber [120 h]; Pipe-Laying Worker [120 h]; Depth > 2.5 m [128.25] | 22,899.5 | 22,899.5 | A6170 | TSE | TSE |
| JDH4-02-007-CN-4080 |  | Sand Bedding [Road 01 ](Completed) | 20d | 2026-01-10 A | 2026-02-01 A | JDH4-02-007-CN-4010 | 100% |  |  | Loader [55 h]; Truck [110 h]; Labor [110 h]; Driver [110 h]; Eq. Operator [110 h]; Depth: 1.51m - 2.5m [128.25] | 2,289.96 | 2,289.96 | A6090 | TSE | TSE |
| JDH4-02-007-CN-4290 |  | Sand Cover & Warning [Road 01 ](Completed) | 14d | 2026-01-17 A | 2026-02-01 A | JDH4-02-007-CN-4080 | 100% |  |  | Labor [80 h]; Skilled Labor [80 h]; Depth > 1.5 m [117.99] | 2,106.76 | 2,106.76 | A6330 | TSE | TSE |
| JDH4-02-007-CN-4010R |  | Excavation and Compaction (FDT) [Road 01 ] | 12d | 2026-02-07 A | 2026-03-23 A | JDH4-02-007-CN-4290 FS+30d | 100% | 2026-03-10 | 2026-03-26 | Excavator [60 h]; Water Tanker [45 h]; Truck [337.5 h]; Labor [675 h]; Driver [510 h]; Eq. Operator [112.5 h]; Depth: 0.0m - 1.5m [384.75] | 13,739.69 | 13,739.69 |  |  | TSE |
| JDH4-02-007-CN-4080R |  | Sand Bedding [Road 01 ] | 11d | 2026-02-10 A | 2026-03-26 A | JDH4-02-007-CN-4010R | 100% | 2026-03-28 | 2026-04-08 | Loader [45 h]; Truck [82.5 h]; Labor [82.5 h]; Driver [82.5 h]; Eq. Operator [82.5 h]; Depth: 1.51m - 2.5m [384.75] | 6,869.87 | 6,869.87 |  |  | TSE |
| JDH4-02-007-CN-4150R |  | Installation of HDPE Pipe [Road 01 ] | 12d | 2026-02-12 A | 2026-06-25 A | JDH4-02-007-CN-4080R | 100% | 2026-04-09 | 2026-04-22 | Excavator [45 h]; Crane [90 h]; Labor [270 h]; Eq. Operator [90 h]; Plumber [90 h]; Pipe-Laying Worker [90 h]; Depth > 2.5 m [384.75] | 68,698.5 | 68,698.5 |  |  | TSE |
| JDH4-02-007-CN-4220 |  | Initial Pressure Test [Road 01 ] | 10d | 2026-02-15 A | 2026-06-27 A | JDH4-02-007-CN-4150R | 100% | 2026-04-23 | 2026-05-04 | Labor [80 h]; Skilled Labor [80 h]; Depth: 0.0m - 1.5m [513.22] | 36,654.89 |  | A6250 | TSE | TSE |
| JDH4-02-007-CN-4290R |  | Sand Cover & Warning [Road 01 ] | 8d | 2026-02-16 A | 2026-06-29 A | JDH4-02-007-CN-4220, JDH4-02-007-CN-5210 | 100% | 2026-05-17 | 2026-05-25 | Labor [60 h]; Skilled Labor [60 h]; Depth > 1.5 m [395.01] | 7,053.06 | 7,053.06 |  |  | TSE |
| JDH4-02-007-CN-4360 |  | Backfilling & Compaction [Road 01 ] | 12d | 2026-02-16 A | 2026-06-28 A | JDH4-02-007-CN-4290R | 100% | 2026-05-30 | 2026-06-11 | Bulldozer [75 h]; Truck [150 h]; Compactor [45 h]; Labor [750 h]; Driver [150 h]; Eq. Operator [100 h]; Depth > 2.5 m [513.22] | 18,327.45 |  | A6410 | TSE | TSE |
| JDH4-02-007-CN-4670 |  | Point of Connection [Road 01 ] | 4d | 2026-04-18 A | 2026-06-30 A | JDH4-02-007-CN-4360 | 100% | 2026-08-03 | 2026-08-06 | Labor [40 h]; Plumber [40 h]; Pipe-Laying Worker [40 h]; POC with dia 160 mm [2.68] | 16,622.15 |  | A7220 | TSE | TSE |
|  | 2 | **Pipe Encasement** |  | 2026-02-16 | 2026-06-29 |  |  |  |  |  |  |  |  |  |  |
| JDH4-02-007-CN-4430 |  | Encasement for Pipes [Road 01 ] | 3d | 2026-02-16 A | 2026-06-29 A | JDH4-02-007-CN-4150, JDH4-02-007-CN-4150R | 100% | 2026-07-15 | 2026-07-18 | Labor [120 h]; Carpenter [30 h]; Mason [30 h]; Pipe encasement dia 200 mm [40.2] | 9,065.88 |  | A6570 | TSE | TSE |
|  | 3 | **Valves** |  | 2026-03-04 | 2026-07-02 |  |  |  |  |  |  |  |  |  |  |
| JDH4-02-007-CN-4500 |  | Installation of Gate Valves [Road 01 ] | 3d | 2026-03-04 A | 2026-05-06 A | JDH4-02-007-CN-4430 | 100% | 2026-04-30 | 2026-05-04 | Labor [30 h]; Skilled Labor [30 h]; Pipe-Laying Worker [30 h]; Gate valves dia (200) mm on pipe dia (200) mm . [2.01] | 11,204.14 |  | A6720 | TSE | TSE |
| JDH4-02-007-CN-4550 |  | Installation of Butterfly Valves [Road 01 ] | 3d | 2026-04-16 A | 2026-07-02 A | JDH4-02-007-CN-4500 | 100% | 2026-04-30 | 2026-05-04 | Labor [30 h]; Skilled Labor [30 h]; Pipe-Laying Worker [30 h]; Butterfly valves with dia (300) mm on pipe dia (315) mm [0.67]; Butterfly valves with dia (400) mm on pipe dia (355) mm [0.67] | 44,152.6 |  | A6810 | TSE | TSE |
| JDH4-02-007-CN-4560 |  | Installation of Washout Valves [Road 01 ] | 3d | 2026-04-16 A | 2026-05-07 A | JDH4-02-007-CN-4550 | 100% | 2026-05-04 | 2026-05-07 | Labor [30 h]; Skilled Labor [30 h]; Pipe-Laying Worker [30 h]; Wash out valve with dia 100 mm on pipe dia (110) mm . [0.89]; Wash out valve with dia 100 mm on pipe dia (200) mm . [0.89]; Wash out valve with dia 100 mm on pipe dia (315) mm . [0.89] | 23,329.08 |  | A6890 | TSE | TSE |
| JDH4-02-007-CN-4580 |  | Installation of Air Valves [Road 01 ] | 3d | 2026-04-19 A | 2026-05-07 A | JDH4-02-007-CN-4560, JDH4-02-007-CN-5140 | 100% | 2026-07-21 | 2026-07-23 | Labor [30 h]; Skilled Labor [30 h]; Pipe-Laying Worker [30 h]; Air valves with dia 50 mm on pipe dia (200 mm) . [1.34] | 14,507.28 |  | A6960 | TSE | TSE |

| ID | WBS | Activity | Duration | Start | Finish | Predecessors | Complete | Planned start | Planned finish | Resources | Cost | Old Activity ID | JDH4-02-007 | Construction |
| --- | --- | --- | --- | --- | --- | --- | --- | --- | --- | --- | --- | --- | --- | --- |
|  | 4 | **Risers** |  | 2026-04-15 | 2026-04-20 |  |  |  |  |  |  |  |  |  |
| JDH4-02-007-CN-4740 |  | Installation of Irrigation Riser with [Road 01 ] | 3d | 2026-04-15 A | 2026-04-20 A | JDH4-02-007-CN-4580, JDH4-02-007-PR-1920, JDH4-02-007-CN-4580 FF | 100% | 2026-07-25 | 2026-07-27 | Labor [30 h]; Skilled Labor [30 h]; Pipe-Laying Worker [30 h]; Irrigation Riser with [2.01] | 13,245.78 | A7300 | TSE | TSE |
|  | 4 | **Potable Network** |  | 2026-02-03 | 2026-06-30 |  |  |  |  |  |  |  |  |  |
|  | 1 | **Pipe Works** |  | 2026-02-03 | 2026-06-22 |  |  |  |  |  |  |  |  |  |
| JDH4-02-007-CN-3330 |  | Excavation and Compaction (FDT) [Road 01 ] | 12d | 2026-02-03 A | 2026-04-16 A | JDH4-02-007-CN-4010, JDH4-02-007-CN-4010R, JDH4-02-007-CN-4150R, JDH4-02-007-CN-4670 | 100% | 2026-06-17 | 2026-06-30 | Excavator [60 h]; Water Tanker [60 h]; Truck [480 h]; Labor [960 h]; Driver [720 h]; Eq. Operator [120 h]; Depth: 0.0m - 1.5m [549.4] | 17,687.38 | A4370 | POT | PW |
| JDH4-02-007-CN-3470 |  | Installation of HDPE Pipe [Road 01 ] | 12d | 2026-02-08 A | 2026-06-20 A | JDH4-02-007-CN-3400, JDH4-02-007-CN-4740, JDH4-02-007-CN-5780 | 100% | 2026-07-13 | 2026-07-26 | Excavator [120 h]; Crane [120 h]; Labor [360 h]; Eq. Operator [120 h]; Plumber [120 h]; Pipe-Laying Worker [120 h]; Depth: > 2.5 [549.4] | 88,436.81 | A4530 | POT | PW |
| JDH4-02-007-CN-3540 |  | Initial Pressure Test [Road 01 ] | 9d | 2026-02-10 A | 2026-06-21 A | JDH4-02-007-CN-3470 | 100% | 2026-07-27 | 2026-08-05 | Labor [90 h]; Skilled Labor [90 h]; Depth: 0.0m - 1.5m [549.4] | 35,374.71 | A4610 | POT | PW |
| JDH4-02-007-CN-3610 |  | Sand Cover & Warning Tape [Road 01 ] | 13d | 2026-02-11 A | 2026-06-22 A | JDH4-02-007-CN-3540 | 100% | 2026-08-06 | 2026-08-20 | Labor [70 h]; Skilled Labor [70 h]; Depth: > 1.5m [549.4] | 8,843.69 | A4690 | POT | PW |
| JDH4-02-007-CN-3680 |  | Backfilling [Road 01 ] | 10d | 2026-02-12 A | 2026-06-22 A | JDH4-02-007-CN-3610, JDH4-02-007-CN-4360, JDH4-02-007-CN-4740, JDH4-02-007-CN-5210 | 100% | 2026-08-22 | 2026-09-01 | Bulldozer [75 h]; Truck [200 h]; Compactor [60 h]; Labor [1000 h]; Driver [200 h]; Eq. Operator [100 h]; Depth: 0.0m - 1.5m [549.4] | 17,687.38 | A4770 | POT | PW |
| JDH4-02-007-CN-3400 |  | Sand Bedding [Road 01 ] | 10d | 2026-02-16 A | 2026-06-18 A | JDH4-02-007-CN-3330 | 100% | 2026-07-01 | 2026-07-12 | Loader [55 h]; Truck [110 h]; Labor [110 h]; Driver [110 h]; Eq. Operator [110 h]; Depth: 1.51m - 2.5m [549.4] | 8,843.69 | A4450 | POT | PW |
|  | 2 | **Pipe Encasement** |  | 2026-02-11 | 2026-06-22 |  |  |  |  |  |  |  |  |  |
| JDH4-02-007-CN-3750 |  | Encasement for Pipes [Road 01 ] | 2d | 2026-02-11 A | 2026-06-22 A | JDH4-02-007-CN-3470 | 100% | 2026-09-27 | 2026-09-28 | Labor [80 h]; Carpenter [20 h]; Mason [20 h]; Pipe encasement diameter 250 mm [63.65] | 13,294.79 | A4910 | POT | PW |
|  | 3 | **Valves** |  | 2026-03-25 | 2026-04-20 |  |  |  |  |  |  |  |  |  |
| JDH4-02-007-CN-3820 |  | Installation of Gate Valves [Road 01 ] | 3d | 2026-03-25 A | 2026-04-08 A | JDH4-02-007-CN-3750, JDH4-02-007-PR-1810, JDH4-02-007-CN-5210 | 100% | 2026-09-01 | 2026-09-05 | Labor [30 h]; Skilled Labor [30 h]; Pipe-Laying Worker [30 h]; Gate valves dia (250) mm on pipe dia (250) mm . [3.35] | 13,140.65 | A5050 | POT | PW |
| JDH4-02-007-CN-3870 |  | Installation of Butterfly valves [Road 01 ] | 2d | 2026-04-09 A | 2026-04-13 A | JDH4-02-007-CN-3820 | 100% | 2026-09-20 | 2026-09-22 | Labor [20 h]; Skilled Labor [20 h]; Pipe-Laying Worker [20 h]; Butterfly valves [2.68] | 37,845.08 | A5120 | POT | PW |
| JDH4-02-007-CN-3880 |  | Installation of Washout valves [Road 01 ] | 5d | 2026-04-11 A | 2026-04-16 A | JDH4-02-007-CN-3870, JDH4-02-007-CN-5770 | 100% | 2026-09-22 | 2026-09-29 | Labor [50 h]; Skilled Labor [50 h]; Pipe-Laying Worker [50 h]; Wash out valve with dia 100 mm on pipe dia (160) mm . [2.01]; Wash out valve with dia 100 mm on pipe dia (200) mm . [2.01]; Wash out valve with dia 100 mm on pipe dia (315) mm . [2.01] | 29,645.31 | A5180 | POT | PW |
| JDH4-02-007-CN-3890 |  | Installation of Air valves [Road 01 ] | 6d | 2026-04-16 A | 2026-04-20 A | JDH4-02-007-CN-3880 | 100% | 2026-09-29 | 2026-10-06 | Labor [60 h]; Skilled Labor [60 h]; Pipe-Laying Worker [60 h]; Air valves with dia 50 mm on pipe dia (200) mm. [8.04] | 60,552.14 | A5250 | POT | PW |
|  | 4 | **Fire Hydrant** |  | 2026-04-30 | 2026-06-30 |  |  |  |  |  |  |  |  |  |
| JDH4-02-007-CN-3910 |  | Installation of 3-outlet fire hydrant [Road 01 ] | 6d | 2026-04-30 A | 2026-06-30 A | JDH4-02-007-CN-3870, JDH4-02-007-PR-2470, JDH4-02-007-CN-3680 | 100% | 2026-10-25 | 2026-11-01 | Labor [60 h]; Skilled Labor [60 h]; Pipe-Laying Worker [60 h]; 3-outlet fire hydrant [8.04] | 75,690.17 | A5290 | POT | PW |
|  | 5 | **Valve Chambers** |  | 2026-02-18 | 2026-04-20 |  |  |  |  |  |  |  |  |  |
| JDH4-02-007-CN-3950 |  | Construction of Valve Chambers [Road 01 ] | 4d | 2026-02-18 A | 2026-04-15 A | JDH4-02-007-CN-3330, JDH4-02-007-CN-5780 | 100% | 2026-08-15 | 2026-08-19 | Excavator [40 h]; Labor [40 h]; Skilled Labor [40 h]; Eq. Operator [40 h]; Chamber at pipe 315 mm Dia, Depth 0- 1.5 m [0.89]; Chamber at pipe 315 mm Dia, Depth 1.51- 2.5 m [0.89]; Chamber at pipe 315 mm Dia, Depth > 2.5 m [0.89] | 104,035.14 | A5390 | POT | PW |
| JDH4-02-007-CN-3960 |  | Construction of Wash out Chambers [Road 01 ] | 9d | 2026-02-28 A | 2026-04-16 A | JDH4-02-007-CN-3950 | 100% | 2026-08-19 | 2026-08-30 | Excavator [90 h]; Labor [90 h]; Skilled Labor [90 h]; Eq. Operator [90 h]; Wash out chamber; on 160 mm dia pipeline Depth 0 - 1.5m [0.75]; Wash out chamber; on 160 mm dia pipeline Depth 1.51 - 2.5m [0.75]; Wash out chamber; on 160 mm dia pipeline, Depth > 2.5 m [0.75]; Wash out chamber; on 200 mm dia pipeline Depth 0 - 1.5m [0.75]; Wash out chamber; on 200 mm dia pipeline Depth 1.51 - 2.5m [0.75]; Wash out chamber; on 200 mm dia pipeline, Depth > 2.5 m [0.75]; Wash out chamber; on 315 mm dia pipeline Depth 1.51 - 2.5m [0.75]; Wash out chamber; on 315 mm dia pipeline, Depth > 2.5 m [0.75] | 261,848.64 | A5500 | POT | PW |
| JDH4-02-007-CN-3970 |  | Construction of Air Valve Chambers [Road 01 ] | 8d | 2026-03-01 A | 2026-04-18 A | JDH4-02-007-CN-3960 | 100% | 2026-08-30 | 2026-09-08 | Excavator [80 h]; Labor [80 h]; Skilled Labor [80 h]; Eq. Operator [80 h]; Air valve chamber; on 200 mm dia pipeline Depth 0 - 1.5m [0.89]; Air valve chamber; on 200 mm dia pipeline Depth 1.51 - 2.5m [0.89]; Air valve chamber; on 200 mm dia pipeline, Depth > 2.5 m [0.89]; Air valve chamber; on 250 mm dia pipeline Depth 0 - 1.5m [0.89]; Air valve chamber; on 250 mm dia pipeline Depth 1.51 - 2.5m [0.89]; Air valve chamber; on 250 mm dia pipeline, Depth > 2.5 m [0.89]; Air valve chamber; on 315 mm dia pipeline Depth 0 - 1.5m [0.89]; Air valve chamber; on 315 mm dia pipeline Depth 1.51 - 2.5m [0.89]; Air valve chamber; on 315 mm dia pipeline, Depth > 2.5 m [0.89] | 274,274.46 | A5620 | POT | PW |
| JDH4-02-007-CN-4600 |  | Construction of Valve Chambers [Road 01 ] | 8d | 2026-03-04 A | 2026-04-19 A | JDH4-02-007-CN-3970 | 100% | 2026-09-08 | 2026-09-17 | Excavator [80 h]; Labor [80 h]; Skilled Labor [80 h]; Eq. Operator [80 h]; Chamber at pipe 315 mm Dia, Depth 1.5 - 4.0 m [0.67]; Chamber at pipe 400 mm Dia, Depth 1.5 - 4.0 m [0.67] | 75,690.16 | A7030 | POT | PW |
| JDH4-02-007-CN-4630 |  | Construction of Air Valve Chambers [Road 01 ] | 8d | 2026-04-14 A | 2026-04-20 A | JDH4-02-007-CN-4610 | 100% | 2026-10-03 | 2026-10-12 | Excavator [80 h]; Labor [80 h]; Skilled Labor [80 h]; Eq. Operator [80 h]; Air valve chamber; on 200 mm dia pipeline Depth 1.5 - 4.0m [1.34] | 75,690.17 | A7140 | POT | PW |
| JDH4-02-007-CN-4610 |  | Construction of Wash Out Valve Chambers [Road 01 ] | 8d | 2026-04-15 A | 2026-04-19 A | JDH4-02-007-CN-4600 | 100% | 2026-09-22 | 2026-10-03 | Excavator [40 h]; Labor [40 h]; Skilled Labor [40 h]; Eq. Operator [40 h]; Wash Out Valve Chambers [0.67] | 37,845.08 | A7060 | POT | PW |

| ID | WBS | Activity | Duration | Start | Finish | Predecessors | Complete | Planned start | Planned finish | Resources | Cost | Actual cost | Old Activity ID | JDH4-02-007 | Construction |
| --- | --- | --- | --- | --- | --- | --- | --- | --- | --- | --- | --- | --- | --- | --- | --- |
|  | 6 | **Road Crossings** |  | 2026-06-18 | 2026-06-25 |  |  |  |  |  |  |  |  |  |  |
| JDH4-02-007-CN-3980 |  | Installation of HDPE road croosing [Road 01 ] | 5d | 2026-06-18 A | 2026-06-25 A | JDH4-02-007-CN-3470 | 100% | 2026-09-26 | 2026-10-01 | Excavator [50 h]; Truck [50 h]; Labor [50 h]; Driver [50 h]; Eq. Operator [50 h]; HDPE road croosing [6.7] | 6,307.51 |  | A5660 | POT | PW |
|  | 5 | **Electrical Works** |  | 2026-05-09 | 2026-10-03 |  |  |  |  |  |  |  |  |  |  |
|  | 1 | **LV Cables** |  | 2026-07-04 | 2026-10-03 |  |  |  |  |  |  |  |  |  |  |
|  | 2 | **Low Voltage Cable** |  | 2026-07-04 | 2026-10-03 |  |  |  |  |  |  |  |  |  |  |
| JDH4-02-007-CN-2610 |  | Excavation for Low Voltage Cable [Road 01 ] | 15d | 2026-07-04 A | 2026-09-24 A | JDH4-02-007-CN-4360 | 100% | 2026-10-15 | 2026-11-01 | Excavator [210 h]; Truck [210 h]; Labor [210 h]; Driver [210 h]; Eq. Operator [210 h]; Excavation for Low Voltage Cable [340.36] | 19,225.3 |  | A3031 | STL | EW |
| JDH4-02-007-CN-2620 |  | Installation of Low Voltage Cables [Road 01 ] | 8d | 2026-07-12 A | 2026-10-03 A | JDH4-02-007-CN-2610 | 100% | 2026-11-02 | 2026-11-10 | Excavator [150 h]; Truck [150 h]; Bobcat [150 h]; Compactor [45 h]; Labor [300 h]; Driver [150 h]; Eq. Operator [450 h]; Electrician [150 h]; Cables, Copper, (4Cx95mm²,Cu/XLPE/SWA/PVC + 1x50mm² PVC/ECC). [223.78] | 52,642.45 |  | A3040 | STL | EW |
|  | 3 | **Street Lighting** |  | 2026-07-20 | 2026-08-13 |  |  |  |  |  |  |  |  |  |  |
| JDH4-02-007-CN-2770 |  | Excavation for Low Voltage Cable [Road 01 ] | 13d | 2026-07-20 A | 2026-08-13 A | JDH4-02-007-CN-2610 | 100% | 2026-11-02 | 2026-11-16 | Excavator [60 h]; Truck [60 h]; Labor [60 h]; Driver [60 h]; Eq. Operator [60 h]; Excavation for Low Voltage Cable [87.1] | 3,279.91 |  | A3290 | STL | EW |
| JDH4-02-007-CN-2850 |  | Installation of Low Voltage Cables [Road 01 ] | 14d | 2026-07-26 A | 2026-08-13 A | JDH4-02-007-CN-2770 SS+11d | 100% | 2026-11-15 | 2026-11-30 | Excavator [90 h]; Truck [90 h]; Bobcat [90 h]; Compactor [27 h]; Labor [180 h]; Driver [90 h]; Eq. Operator [270 h]; Electrician [90 h]; Low Voltage Cables [296.81] | 16,765.37 |  | A3360 | STL | EW |
|  | 2 | **Telecommunication** |  | 2026-05-09 | 2026-08-19 |  |  |  |  |  |  |  |  |  |  |
| JDH4-02-007-CN-3150 |  | Installation Road Crossing Un R/F 6 way 50mm HDPE Pipe [Road 01 ] | 15d | 2026-05-09 A | 2026-06-29 A | JDH4-02-007-CN-3080, JDH4-02-007-CN-3980 | 100% | 2026-10-22 | 2026-11-09 | Truck [40 h]; Bobcat [40 h]; Compactor [12 h]; Labor [40 h]; Driver [40 h]; Eq. Operator [40 h]; Carpenter [40 h]; Steel Fixer [40 h]; Mason [40 h]; Electrician [40 h]; Installation Road Crossing Un R/F 6 way 50mm HDPE Pipe [12.73] | 5,392.92 |  | A3950 | TEL | EW |
| JDH4-02-007-CN-3260 |  | Installation of Manholes [Road 01 ] | 15d | 2026-05-09 A | 2026-08-19 A | JDH4-02-007-CN-3150 | 100% | 2026-11-04 | 2026-11-22 | Truck [50 h]; Compactor [15 h]; Skilled Labor [50 h]; Driver [50 h]; Eq. Operator [50 h]; Steel Fixer [50 h]; Mason [50 h]; Plumber [50 h]; Manhole type 1 (1500*1200*1200) mm [6.7] | 56,767.63 |  | A4120 | TEL | EW |
| JDH4-02-007-CN-3080 |  | Installation Road Crossing R/F 6 way 50mm HDPE Pipe [Road 01 ] | 15d | 2026-05-16 A | 2026-08-16 A | JDH4-02-007-CN-2770 | 100% | 2026-09-30 | 2026-10-18 | Truck [220 h]; Bobcat [220 h]; Compactor [66 h]; Labor [220 h]; Driver [220 h]; Eq. Operator [440 h]; Carpenter [220 h]; Steel Fixer [220 h]; Mason [220 h]; Electrician [110 h]; Installation Road Crossing R/F 6 way 50mm HDPE Pipe [731.64] | 206,634.16 |  | A3860 | TEL | EW |
|  | 7 | **Open Drain Channel** |  | 2026-01-28 | 2026-03-09 |  |  |  |  |  |  |  |  |  |  |
| JDH4-02-007-CN-5850 |  | Channel excavation [Road 01 ](Completed) | 4d | 2026-01-28 A | 2026-02-01 A | JDH4-02-007-CN-4290 | 100% |  |  | Excavator [210 h]; Truck [210 h]; Compactor [63 h]; Driver [210 h]; Eq. Operator [210 h]; Channel excavation [3886] | 65,850.6 | 65,850.6 | A9680 | STO | OP |
| JDH4-02-007-CN-5860 |  | Backfill of the existing channel [Road 01 ](Completed) | 4d | 2026-01-28 A | 2026-02-01 A | JDH4-02-007-CN-5850 FF | 100% |  |  | Loader [210 h]; Bulldozer [315 h]; Water Tanker [420 h]; Grider [420 h]; Truck [840 h]; Road Roller [420 h]; Driver [1260 h]; Eq. Operator [210 h]; Backfill of the existing channel [1608] | 30,276.07 | 30,276.07 | A9700 | STO | OP |
| JDH4-02-007-CN-5870 |  | Compaction [Road 01 ] | 24d | 2026-02-02 A | 2026-03-01 A | JDH4-02-007-CN-5860R | 100% | 2026-03-16 | 2026-04-15 | Compactor [189 h]; Labor [840 h]; Eq. Operator [210 h]; Compaction [670] | 18,922.54 |  | A9720 | STO | OP |
| JDH4-02-007-CN-5850R |  | Channel excavation [Road 01 ] | 21d | 2026-02-03 A | 2026-02-08 A | JDH4-02-007-CN-5860 | 100% | 2026-02-11 | 2026-03-08 | Excavator [157.5 h]; Truck [157.5 h]; Compactor [45 h]; Driver [157.5 h]; Eq. Operator [157.5 h]; Channel excavation [5829] | 98,775.9 | 98,775.9 |  |  | OP |
| JDH4-02-007-CN-5860R |  | Backfill of the existing channel [Road 01 ] | 21d | 2026-02-04 A | 2026-02-26 A | JDH4-02-007-CN-5850R | 100% | 2026-02-18 | 2026-03-15 | Loader [157.5 h]; Bulldozer [240 h]; Water Tanker [315 h]; Grider [315 h]; Truck [630 h]; Road Roller [315 h]; Driver [945 h]; Eq. Operator [157.5 h]; Backfill of the existing channel [1072] | 20,184.04 | 20,184.04 |  |  | OP |
| JDH4-02-007-CN-5880 |  | Finished grouted riprap for side ditches [Road 01 ] | 21d | 2026-03-04 A | 2026-03-09 A | JDH4-02-007-CN-5870, JDH4-02-007-CN-5780 | 100% | 2026-06-01 | 2026-06-24 | Bobcat [210 h]; Labor [1050 h]; Skilled Labor [630 h]; Eq. Operator [210 h]; Mason [210 h]; Finished grouted riprap for side ditches [1273] | 155,795.6 |  | A9740 | STO | OP |
|  | 1 | **Road 02** |  | 2026-01-07 | 2026-06-27 |  |  |  |  |  |  |  |  |  |  |
|  | 7 | **Under Pass** |  | 2026-02-02 | 2026-06-18 |  |  |  |  |  |  |  |  |  |  |
| JDH4-02-007-CN-1940 |  | Compacted structural backfill for closing the underpass [Road 02 ] | 14d | 2026-02-02 A | 2026-03-25 A | JDH4-02-007-CN-1000, JDH4-02-007-CN-3830 SS | 100% | 2026-04-15 | 2026-05-02 | Truck [140 h]; Bobcat [140 h]; Compactor [280 h]; Labor [280 h]; Driver [140 h]; Eq. Operator [140 h]; Compacted structural backfill for closing the underpass [147.4] | 16,651.84 |  | A1830 | RO | UP |
| JDH4-02-007-CN-2410 |  | RC wall and the foundation at face of underpass [Road 02 ] | 21d | 2026-04-08 A | 2026-06-18 A | JDH4-02-007-CN-1940, JDH4-02-007-CN-3260, JDH4-02-007-CN-4630 | 100% | 2026-11-23 | 2026-12-16 | Labor [210 h]; Carpenter [210 h]; Steel Fixer [210 h]; Mason [210 h]; RC wall and the foundation at face of underpass [63.65] | 95,874.21 |  | A2630 | RO | UP |

| ID | WBS | Activity | Duration | Start | Finish | Predecessors | Complete | Planned start | Planned finish | Resources | Cost | Actual cost | Old Activity ID | JDH4-02-007 | Construction |
| --- | --- | --- | --- | --- | --- | --- | --- | --- | --- | --- | --- | --- | --- | --- | --- |
|  | 2 | **Sewerage Network** |  | 2026-06-11 | 2026-06-22 |  |  |  |  |  |  |  |  |  |  |
|  | 1 | **Pipe Works** |  | 2026-06-11 | 2026-06-22 |  |  |  |  |  |  |  |  |  |  |
| JDH4-02-007-CN-4770 |  | Excavation & Compaction (FDT) [Road 02 ] | 12d | 2026-06-11 A | 2026-06-15 A | JDH4-02-007-CN-5870 SS | 100% | 2026-06-17 | 2026-06-30 | Excavator [90 h]; Water Tanker [45 h]; Truck [360 h]; Labor [720 h]; Driver [180 h]; Eq. Operator [180 h]; Depth : 0.0m - 1.5m [77.72] | 5,705.57 |  | A7490 | SEW | SW |
| JDH4-02-007-CN-5050 |  | Sand Cover & Warning Tape [Road 02 ] | 5d | 2026-06-11 A | 2026-06-21 A | JDH4-02-007-CN-4980, JDH4-02-007-CN-4980 FF | 100% | 2026-07-23 | 2026-07-28 | Labor [20 h]; Skilled Labor [20 h]; Depth: 1.51m - 2.5m [77.72] | 2,852.78 |  | A7810 | SEW | SW |
| JDH4-02-007-CN-4840 |  | Sand Bedding [Road 02 ] | 10d | 2026-06-13 A | 2026-06-17 A | JDH4-02-007-CN-4770, JDH4-02-007-CN-4770 FF | 100% | 2026-07-08 | 2026-07-19 | Loader [50 h]; Truck [100 h]; Labor [100 h]; Driver [100 h]; Eq. Operator [100 h]; Depth : 1.51m - 2.5m [77.72] | 2,852.78 |  | A7570 | SEW | SW |
| JDH4-02-007-CN-4910 |  | Installation of GRP Pipe [Road 02 ] | 10d | 2026-06-16 A | 2026-06-20 A | JDH4-02-007-CN-4840 SS, JDH4-02-007-CN-4840 FF | 100% | 2026-07-08 | 2026-07-19 | Loader [60 h]; Truck [120 h]; Labor [120 h]; Driver [120 h]; Eq. Operator [120 h]; Depth > 2.5 m [77.72] | 28,527.86 |  | A7650 | SEW | SW |
| JDH4-02-007-CN-4980 |  | Gravity Test [Road 02 ] | 3d | 2026-06-21 A | 2026-06-22 A | JDH4-02-007-CN-4910, JDH4-02-007-CN-4910 FF | 100% | 2026-07-20 | 2026-07-22 | Excavator [30 h]; Crane [30 h]; Labor [90 h]; Eq. Operator [30 h]; Plumber [30 h]; Pipe-Laying Worker [30 h]; Depth: 0.0m - 1.5m [77.72] | 11,411.15 |  | A7730 | SEW | SW |
| JDH4-02-007-CN-5120 |  | Backfilling & Compaction [Road 02 ] | 7d | 2026-06-22 A | 2026-06-22 A | JDH4-02-007-CN-5050 SS, JDH4-02-007-CN-5050 FF | 100% | 2026-07-23 | 2026-07-30 | Bulldozer [41.25 h]; Truck [110 h]; Compactor [33 h]; Labor [550 h]; Driver [110 h]; Eq. Operator [110 h]; Depth > 2.5 m [77.72] | 5,705.57 |  | A7890 | SEW | SW |
|  | 5 | **Pipe Encasement** |  | 2026-06-11 | 2026-06-21 |  |  |  |  |  |  |  |  |  |  |
| JDH4-02-007-CN-5260 |  | Pipe Encasement Works [Road 02 ] | 7d | 2026-06-11 A | 2026-06-21 A | JDH4-02-007-CN-4910 | 100% | 2026-07-15 | 2026-07-22 | Labor [200 h]; Carpenter [50 h]; Mason [50 h]; Pipe encasement dia 150 mm [1.34] | 304.22 | 304.22 | A8200 | SEW | SW |
|  | 2 | **Manholes** |  | 2026-06-11 | 2026-06-21 |  |  |  |  |  |  |  |  |  |  |
| JDH4-02-007-CN-5190 |  | Installation of Manholes [Road 02 ] | 5d | 2026-06-11 A | 2026-06-21 A | JDH4-02-007-CN-5260, JDH4-02-007-CN-2850 SS+12d | 100% | 2026-10-24 | 2026-10-29 | Truck [35 h]; Compactor [10.5 h]; Skilled Labor; Driver [35 h]; Eq. Operator [35 h]; Steel Fixer; Mason; Plumber [70 h]; MH depth 0 - 1.5m [1.34] | 32,441.65 |  | A8080 | SEW | SW |
|  | 3 | **TSE Network** |  | 2026-01-07 | 2026-06-21 |  |  |  |  |  |  |  |  |  |  |
|  | 1 | **Pipe Works** |  | 2026-01-07 | 2026-06-21 |  |  |  |  |  |  |  |  |  |  |
| JDH4-02-007-CN-3990 |  | Excavation and Compaction (FDT) [Road 02 ](Completed) | 22d | 2026-01-07 A | 2026-02-01 A | JDH4-02-007-CN-5860 | 100% |  |  | Excavator [90 h]; Water Tanker [45 h]; Truck [360 h]; Labor [720 h]; Driver [180 h]; Eq. Operator [180 h]; Depth: 0.0m - 1.5m [161.15] | 5,754.78 | 5,754.78 | A5990 | TSE | TSE |
| JDH4-02-007-CN-4060 |  | Sand Bedding [Road 02 ](Completed) | 20d | 2026-01-10 A | 2026-02-01 A | JDH4-02-007-CN-3990 SS, JDH4-02-007-CN-3990 FF | 100% |  |  | Loader [30 h]; Truck [60 h]; Labor [60 h]; Driver [60 h]; Eq. Operator [60 h]; Depth: 1.51m - 2.5m [161.15] | 2,877.4 | 2,877.4 | A6070 | TSE | TSE |
| JDH4-02-007-CN-4130 |  | Installation of HDPE Pipe [Road 02 ](Completed) | 17d | 2026-01-13 A | 2026-02-01 A | JDH4-02-007-CN-4060 SS, JDH4-02-007-CN-4060 FF | 100% |  |  | Excavator [110 h]; Crane [110 h]; Labor [330 h]; Eq. Operator [110 h]; Plumber [110 h]; Pipe-Laying Worker [110 h]; Depth > 2.5 m [131.85] | 23,542.29 | 23,542.29 | A6150 | TSE | TSE |
| JDH4-02-007-CN-4270 |  | Sand Cover & Warning [Road 02 ](Completed) | 9d | 2026-01-22 A | 2026-02-01 A | JDH4-02-007-CN-4130 | 100% |  |  | Labor [50 h]; Skilled Labor [50 h]; Depth > 1.5 m [131.85] | 2,354.23 | 2,354.23 | A6310 | TSE | TSE |
| JDH4-02-007-CN-3990R |  | Excavation and Compaction (FDT) [Road 02 ] | 18d | 2026-02-28 A | 2026-06-01 A | JDH4-02-007-CN-4270, JDH4-02-007-CN-5880, JDH4-02-007-CN-5260, JDH4-02-007-CN-5120 | 100% | 2026-06-25 | 2026-07-15 | Excavator [67.5 h]; Water Tanker [37.5 h]; Truck [270 h]; Labor [540 h]; Driver [135 h]; Eq. Operator [135 h]; Depth: 0.0m - 1.5m [131.85] | 4,708.46 | 4,708.46 |  |  | TSE |
| JDH4-02-007-CN-4060R |  | Sand Bedding [Road 02 ] | 6d | 2026-03-04 A | 2026-06-02 A | JDH4-02-007-CN-3990R | 100% | 2026-07-16 | 2026-07-22 | Loader [22.5 h]; Truck [45 h]; Labor [45 h]; Driver [45 h]; Eq. Operator [45 h]; Depth: 1.51m - 2.5m [131.85] | 2,354.23 | 2,354.23 |  |  | TSE |
| JDH4-02-007-CN-4130R |  | Installation of HDPE Pipe [Road 02 ] | 11d | 2026-03-09 A | 2026-06-04 A | JDH4-02-007-CN-4060R | 100% | 2026-07-23 | 2026-08-04 | Excavator [82.5 h]; Crane [82.5 h]; Labor [247.5 h]; Eq. Operator [82.5 h]; Plumber [82.5 h]; Pipe-Laying Worker [82.5 h]; Depth > 2.5 m [161.15] | 28,773.91 | 28,773.91 |  |  | TSE |
| JDH4-02-007-CN-4200 |  | Initial Pressure Test [Road 02 ] | 5d | 2026-03-14 A | 2026-06-06 A | JDH4-02-007-CN-4130R | 100% | 2026-08-05 | 2026-08-10 | Labor [50 h]; Skilled Labor [50 h]; Depth: 0.0m - 1.5m [293.46] | 20,959.32 |  | A6230 | TSE | TSE |
| JDH4-02-007-CN-4270R |  | Sand Cover & Warning [Road 02 ] | 5d | 2026-03-23 A | 2026-06-17 A | JDH4-02-007-CN-4200, JDH4-02-007-CN-5190 | 100% | 2026-09-14 | 2026-09-20 | Labor [37.5 h]; Skilled Labor [37.5 h]; Depth > 1.5 m [161.15] | 2,877.4 | 2,877.4 |  |  | TSE |
| JDH4-02-007-CN-4340 |  | Backfilling & Compaction [Road 02 ] | 17d | 2026-03-29 A | 2026-06-21 A | JDH4-02-007-CN-4270R | 100% | 2026-09-20 | 2026-10-11 | Bulldozer [63.75 h]; Truck [170 h]; Compactor [51 h]; Labor [850 h]; Driver [170 h]; Eq. Operator [170 h]; Depth: 0.0m - 1.5m [293.46] | 10,479.66 |  | A6390 | TSE | TSE |
| JDH4-02-007-CN-4650 |  | Point of Connection [Road 02 ] | 5d | 2026-04-08 A | 2026-06-21 A | JDH4-02-007-CN-4130R, JDH4-02-007-CN-4340 | 100% | 2026-10-17 | 2026-10-22 | Labor [50 h]; Plumber [50 h]; Pipe-Laying Worker [50 h]; POC with dia 90 mm [1.34] | 8,311.08 |  | A7200 | TSE | TSE |

| ID | WBS | Activity | Duration | Start | Finish | Predecessors | Complete | Planned start | Planned finish | Resources | Cost | Old Activity ID | JDH4-02-007 | Construction |
| --- | --- | --- | --- | --- | --- | --- | --- | --- | --- | --- | --- | --- | --- | --- |
|  | 2 | **Pipe Encasement** |  | 2026-03-23 | 2026-06-17 |  |  |  |  |  |  |  |  |  |
| JDH4-02-007-CN-4410 |  | Encasement for Pipes [Road 02 ] | 10d | 2026-03-23 A | 2026-06-17 A | JDH4-02-007-CN-4130, JDH4-02-007-CN-4130R, JDH4-02-007-CN-4650, JDH4-02-007-CN-4680 | 100% | 2026-11-07 | 2026-11-17 | Labor [80 h]; Carpenter [20 h]; Mason [20 h]; Pipe encasement dia 110 mm [23.45] | 5,288.43 | A6550 | TSE | TSE |
|  | 3 | **Valves** |  | 2026-03-11 | 2026-04-20 |  |  |  |  |  |  |  |  |  |
| JDH4-02-007-CN-4480 |  | Installation of Gate Valves [Road 02 ] | 5d | 2026-03-11 A | 2026-04-15 A | JDH4-02-007-CN-4130, JDH4-02-007-CN-4130R, JDH4-02-007-CN-4410 | 100% | 2026-10-21 | 2026-10-27 | Labor [50 h]; Skilled Labor [50 h]; Pipe-Laying Worker [50 h]; Gate valves dia (100) mm on pipe dia (110) mm . [2.01] | 11,204.14 | A6700 | TSE | TSE |
| JDH4-02-007-CN-4570 |  | Installation of Air Valves [Road 02 ] | 5d | 2026-04-15 A | 2026-04-20 A | JDH4-02-007-CN-4480, JDH4-02-007-CN-2410 | 100% | 2026-11-19 | 2026-11-25 | Labor [50 h]; Skilled Labor [50 h]; Pipe-Laying Worker [50 h]; Air valves with dia 50 mm on pipe dia (110mm) . [0.67] | 7,253.64 | A6950 | TSE | TSE |
|  | 4 | **Risers** |  | 2026-02-25 | 2026-04-19 |  |  |  |  |  |  |  |  |  |
| JDH4-02-007-CN-4720 |  | Installation of Irrigation Riser with [Road 02 ] | 6d | 2026-02-25 A | 2026-04-19 A | JDH4-02-007-CN-4570, JDH4-02-007-CN-4740, JDH4-02-007-CN-4410, JDH4-02-007-CN-4630, JDH4-02-007-CN-3670, JDH4-02-007-CN-4570 FF | 100% | 2026-11-10 | 2026-11-17 | Labor [40 h]; Skilled Labor; Pipe-Laying Worker [40 h]; Irrigation Riser with [1.34] | 8,830.52 | A7280 | TSE | TSE |
|  | 4 | **Potable Network** |  | 2026-02-03 | 2026-06-27 |  |  |  |  |  |  |  |  |  |
|  | 1 | **Pipe Works** |  | 2026-02-03 | 2026-06-27 |  |  |  |  |  |  |  |  |  |
| JDH4-02-007-CN-3310 |  | Excavation and Compaction (FDT) [Road 02 ] | 14d | 2026-02-03 A | 2026-06-10 A | JDH4-02-007-CN-2620 | 100% | 2026-07-09 | 2026-07-25 | Excavator [160 h]; Water Tanker [160 h]; Truck [320 h]; Labor [640 h]; Driver [160 h]; Eq. Operator [160 h]; Depth: 0.0m - 1.5m [261.3] | 8,412.29 | A4350 | POT | PW |
| JDH4-02-007-CN-3380 |  | Sand Bedding [Road 02 ] | 4d | 2026-02-05 A | 2026-06-14 A | JDH4-02-007-CN-3310 | 100% | 2026-07-26 | 2026-07-29 | Loader [30 h]; Truck [60 h]; Labor [60 h]; Driver [60 h]; Eq. Operator [60 h]; Depth: 1.51m - 2.5m [261.3] | 4,206.15 | A4430 | POT | PW |
| JDH4-02-007-CN-3450 |  | Installation of HDPE Pipe [Road 02 ] | 10d | 2026-02-09 A | 2026-06-17 A | JDH4-02-007-CN-3380 | 100% | 2026-07-30 | 2026-08-10 | Excavator [100 h]; Crane [100 h]; Labor [300 h]; Eq. Operator [100 h]; Plumber [100 h]; Pipe-Laying Worker [100 h]; Depth: > 2.5 [261.3] | 42,061.41 | A4510 | POT | PW |
| JDH4-02-007-CN-3520 |  | Initial Pressure Test [Road 02 ] | 8d | 2026-02-12 A | 2026-06-20 A | JDH4-02-007-CN-3450 | 100% | 2026-08-11 | 2026-08-19 | Labor [40 h]; Skilled Labor [40 h]; Depth: 0.0m - 1.5m [261.3] | 16,824.56 | A4590 | POT | PW |
| JDH4-02-007-CN-3590 |  | Sand Cover & Warning Tape [Road 02 ] | 10d | 2026-02-14 A | 2026-06-21 A | JDH4-02-007-CN-3520, JDH4-02-007-CN-2740 | 100% | 2026-08-20 | 2026-08-31 | Labor [40 h]; Skilled Labor [40 h]; Depth: > 1.5m [261.3] | 4,206.15 | A4670 | POT | PW |
| JDH4-02-007-CN-3660 |  | Backfilling [Road 02 ] | 8d | 2026-02-15 A | 2026-06-27 A | JDH4-02-007-CN-3590, JDH4-02-007-CN-3670, JDH4-02-007-CN-5130 | 100% | 2026-09-01 | 2026-09-09 | Bulldozer [60 h]; Truck [160 h]; Compactor [48 h]; Labor [800 h]; Driver [160 h]; Eq. Operator [160 h]; Depth: 0.0m - 1.5m [261.3] | 8,412.29 | A4750 | POT | PW |
|  | 2 | **Pipe Encasement** |  | 2026-02-14 | 2026-06-21 |  |  |  |  |  |  |  |  |  |
| JDH4-02-007-CN-3730 |  | Encasement for Pipes [Road 02 ] | 5d | 2026-02-14 A | 2026-06-21 A | JDH4-02-007-CN-3450, JDH4-02-007-CN-3660 | 100% | 2026-10-20 | 2026-10-25 | Labor [100 h]; Carpenter [50 h]; Mason [50 h]; Pipe encasement diameter 160 mm [31.49] | 6,577.42 | A4890 | POT | PW |
|  | 3 | **Valves** |  | 2026-02-18 | 2026-03-25 |  |  |  |  |  |  |  |  |  |
| JDH4-02-007-CN-3800 |  | Installation of Gate Valves [Road 02 ] | 7d | 2026-02-18 A | 2026-03-25 A | JDH4-02-007-CN-3730 SS, JDH4-02-007-CN-3890 | 100% | 2026-10-15 | 2026-10-24 | Labor [70 h]; Skilled Labor [70 h]; Pipe-Laying Worker [70 h]; Gate valves dia (150) mm on pipe dia (160) mm . [2.68] | 10,512.52 | A5030 | POT | PW |
|  | 5 | **Valve Chambers** |  | 2026-04-15 | 2026-05-02 |  |  |  |  |  |  |  |  |  |
| JDH4-02-007-CN-4620 |  | Construction of Air Valve Chambers [Road 02 ] | 4d | 2026-04-15 A | 2026-05-02 A | JDH4-02-007-CN-3800 SS, JDH4-02-007-CN-3980, JDH4-02-007-CN-5780, JDH4-02-007-CN-5190, JDH4-02-007-CN-4720, JDH4-02-007-CN-3910 | 100% | 2026-12-03 | 2026-12-08 | Excavator [40 h]; Labor [40 h]; Skilled Labor [40 h]; Eq. Operator [40 h]; Air valve chamber; on 110 mm dia pipeline Depth 1.5 - 4.0m [0.67] | 37,845.08 | A7130 | POT | PW |
|  | 5 | **Electrical Works** |  | 2026-03-04 | 2026-05-21 |  |  |  |  |  |  |  |  |  |
|  | 2 | **Telecommunication** |  | 2026-03-04 | 2026-05-21 |  |  |  |  |  |  |  |  |  |
| JDH4-02-007-CN-3130 |  | Installation Road Crossing Un R/F 6 way 50mm HDPE Pipe [Road 02 ] | 21d | 2026-03-04 A | 2026-03-11 A | JDH4-02-007-CN-3060 | 100% | 2026-11-29 | 2026-12-23 | Truck [30 h]; Bobcat [30 h]; Compactor [9 h]; Labor [30 h]; Driver [30 h]; Eq. Operator [30 h]; Carpenter [30 h]; Steel Fixer [30 h]; Mason [30 h]; Electrician [30 h]; Installation Road Crossing Un R/F 6 way 50mm HDPE Pipe [9.38] | 3,973.73 | A3930 | TEL | EW |
| JDH4-02-007-CN-3240 |  | Installation of Manholes [Road 02 ] | 21d | 2026-03-25 A | 2026-05-16 A | JDH4-02-007-CN-3130, JDH4-02-007-CN-3260, JDH4-02-007-CN-2850, JDH4-02-007-CN-2360, JDH4-02-007-CN-2260 | 100% | 2026-12-26 | 2027-01-19 | Truck [30 h]; Compactor [9 h]; Skilled Labor [30 h]; Driver [30 h]; Eq. Operator [30 h]; Steel Fixer [30 h]; Mason [30 h]; Plumber [30 h]; Manhole type 1 (1500*1200*1200) mm [4.02] | 34,060.58 | A4100 | TEL | EW |
| JDH4-02-007-CN-3060 |  | Installation Road Crossing R/F 6 way 50mm HDPE Pipe [Road 02 ] | 21d | 2026-05-13 A | 2026-05-21 A | JDH4-02-007-CN-3310, JDH4-02-007-CN-4620 | 100% | 2026-12-10 | 2027-01-04 | Truck [150 h]; Bobcat [150 h]; Compactor [45 h]; Labor [150 h]; Driver [150 h]; Eq. Operator [150 h]; Carpenter [150 h]; Steel Fixer [150 h]; Mason [150 h]; Electrician [150 h]; Installation Road Crossing R/F 6 way 50mm HDPE Pipe [471.68] | 133,214.7 | A3840 | TEL | EW |

| ID | WBS | Activity | Duration | Start | Finish | Predecessors | Complete | Planned start | Planned finish | Resources | Cost | Old Activity ID | JDH4-02-007 | Construction |
| --- | --- | --- | --- | --- | --- | --- | --- | --- | --- | --- | --- | --- | --- | --- |
|  | 7 | **Road 10** |  | 2026-05-05 | 2026-10-03 |  |  |  |  |  |  |  |  |  |
|  | 2 | **Sewerage Network** |  | 2026-07-01 | 2026-08-20 |  |  |  |  |  |  |  |  |  |
|  | 1 | **Pipe Works** |  | 2026-07-01 | 2026-08-11 |  |  |  |  |  |  |  |  |  |
| JDH4-02-007-CN-4830 |  | Excavation & Compaction (FDT) [Road 10 ] | 12d | 2026-07-01 A | 2026-07-06 A | JDH4-02-007-CN-4800 | 100% | 2026-09-09 | 2026-09-22 | Excavator [95 h]; Water Tanker [62.7 h]; Truck [494 h]; Labor [988 h]; Driver [741 h]; Eq. Operator [190 h]; Depth : 0.0m - 1.5m [392.62] | 28,822.98 | A7550 | SEW | RD |
| JDH4-02-007-CN-4900 |  | Sand Bedding [Road 10 ] | 8d | 2026-07-07 A | 2026-07-15 A | JDH4-02-007-CN-4830 | 100% | 2026-09-24 | 2026-10-03 | Loader [40 h]; Truck [80 h]; Labor [80 h]; Driver [80 h]; Eq. Operator [80 h]; Depth : 1.51m - 2.5m [392.62] | 14,411.47 | A7630 | SEW | RD |
| JDH4-02-007-CN-4970 |  | Installation of GRP Pipe [Road 10 ] | 8d | 2026-07-16 A | 2026-07-22 A | JDH4-02-007-CN-4900 | 100% | 2026-10-04 | 2026-10-12 | Loader [40 h]; Truck [80 h]; Labor [80 h]; Driver [80 h]; Eq. Operator [80 h]; Depth > 2.5 m [392.62] | 144,114.86 | A7710 | SEW | RD |
| JDH4-02-007-CN-5040 |  | Gravity Test [Road 10 ] | 4d | 2026-07-23 A | 2026-07-28 A | JDH4-02-007-CN-4970 | 100% | 2026-10-13 | 2026-10-17 | Excavator [150 h]; Crane [150 h]; Labor [450 h]; Eq. Operator [150 h]; Plumber [150 h]; Pipe-Laying Worker [150 h]; Depth: 0.0m - 1.5m [392.62] | 57,645.96 | A7790 | SEW | RD |
| JDH4-02-007-CN-5110 |  | Sand Cover & Warning Tape [Road 10 ] | 4d | 2026-07-29 A | 2026-08-05 A | JDH4-02-007-CN-5040 | 100% | 2026-10-18 | 2026-10-21 | Labor [60 h]; Skilled Labor [60 h]; Depth: 1.51m - 2.5m [392.62] | 14,411.47 | A7870 | SEW | RD |
| JDH4-02-007-CN-5180 |  | Backfilling & Compaction [Road 10 ] | 5d | 2026-08-06 A | 2026-08-11 A | JDH4-02-007-CN-5110 | 100% | 2026-10-22 | 2026-10-27 | Bulldozer [52.5 h]; Truck [140 h]; Compactor [42 h]; Labor [700 h]; Driver [140 h]; Eq. Operator [140 h]; Depth > 2.5 m [392.62] | 28,822.98 | A7950 | SEW | RD |
|  | 5 | **Pipe Encasement** |  | 2026-08-11 | 2026-08-18 |  |  |  |  |  |  |  |  |  |
| JDH4-02-007-CN-5320 |  | Pipe Encasement Works [Road 10 ] | 5d | 2026-08-11 A | 2026-08-18 A | JDH4-02-007-CN-4970 | 100% | 2026-10-13 | 2026-10-18 | Labor [200 h]; Carpenter [50 h]; Mason [50 h]; Pipe encasement dia 250 mm [6.7] | 1,521.08 | A8260 | SEW | RD |
|  | 2 | **Manholes** |  | 2026-08-06 | 2026-08-20 |  |  |  |  |  |  |  |  |  |
| JDH4-02-007-CN-5250 |  | Installation of Manholes [Road 10 ] | 7d | 2026-08-06 A | 2026-08-20 A | JDH4-02-007-CN-5320 | 100% | 2026-10-19 | 2026-10-26 | Truck [70 h]; Compactor [21 h]; Skilled Labor [70 h]; Driver [70 h]; Eq. Operator [70 h]; Steel Fixer [70 h]; Mason [70 h]; Plumber [70 h]; MH depth 4.51 -5.5 m [2.68]; MH depth 4.51 -5.5 m with back drop [2.68] | 129,766.58 | A8140 | SEW | RD |
|  | 3 | **TSE Network** |  | 2026-05-05 | 2026-06-17 |  |  |  |  |  |  |  |  |  |
|  | 1 | **Pipe Works** |  | 2026-05-05 | 2026-06-04 |  |  |  |  |  |  |  |  |  |
| JDH4-02-007-CN-4050 |  | Excavation and Compaction (FDT) [Road 10 ] | 21d | 2026-05-05 A | 2026-05-10 A | JDH4-02-007-CN-5180, JDH4-02-007-CN-4270R SS, JDH4-02-007-CN-5120 | 100% | 2026-11-30 | 2026-12-23 | Excavator [315 h]; Water Tanker [315 h]; Truck [630 h]; Labor [1260 h]; Driver [945 h]; Eq. Operator [210 h]; Depth: 0.0m - 1.5m [529.3] | 18,901.67 | A6050 | TSE | TSE |
| JDH4-02-007-CN-4120 |  | Sand Bedding [Road 10 ] | 21d | 2026-05-11 A | 2026-05-13 A | JDH4-02-007-CN-4050 SS+4d, JDH4-02-007-CN-5250, JDH4-02-007-CN-5250 FF, JDH4-02-007-CN-3910 SS, JDH4-02-007-CN-3890, JDH4-02-007-CN-3270 | 100% | 2026-12-05 | 2026-12-28 | Loader [105 h]; Truck [210 h]; Labor [210 h]; Driver [210 h]; Eq. Operator [210 h]; Depth: 1.51m - 2.5m [529.3] | 9,450.86 | A6130 | TSE | TSE |
| JDH4-02-007-CN-4190 |  | Installation of HDPE Pipe [Road 10 ] | 18d | 2026-05-14 A | 2026-05-17 A | JDH4-02-007-CN-4120, JDH4-02-007-CN-3680 | 100% | 2026-12-29 | 2027-01-18 | Excavator [200 h]; Crane [200 h]; Labor [600 h]; Eq. Operator [200 h]; Plumber [200 h]; Pipe-Laying Worker [200 h]; Depth > 2.5 m [529.3] | 94,508.42 | A6210 | TSE | TSE |
| JDH4-02-007-CN-4260 |  | Initial Pressure Test [Road 10 ] | 6d | 2026-05-18 A | 2026-05-19 A | JDH4-02-007-CN-4190 | 100% | 2027-01-19 | 2027-01-25 | Labor [80 h]; Skilled Labor [80 h]; Depth: 0.0m - 1.5m [529.3] | 37,803.35 | A6290 | TSE | TSE |
| JDH4-02-007-CN-4710 |  | Point of Connection [Road 10 ] | 3d | 2026-05-20 A | 2026-05-20 A | JDH4-02-007-CN-4190 | 100% | 2027-01-19 | 2027-01-21 | Labor [30 h]; Plumber [30 h]; Pipe-Laying Worker [30 h]; POC with dia 90 mm [2.01] | 12,466.62 | A7260 | TSE | TSE |
| JDH4-02-007-CN-4330 |  | Sand Cover & Warning [Road 10 ] | 8d | 2026-05-21 A | 2026-05-27 A | JDH4-02-007-CN-4260 | 100% | 2027-01-26 | 2027-02-03 | Labor [150 h]; Skilled Labor [150 h]; Depth > 1.5 m [529.3] | 9,450.86 | A6370 | TSE | TSE |
| JDH4-02-007-CN-4400 |  | Backfilling & Compaction [Road 10 ] | 11d | 2026-05-30 A | 2026-06-04 A | JDH4-02-007-CN-4330 SS+2d | 100% | 2027-01-28 | 2027-02-09 | Bulldozer [285 h]; Truck [285 h]; Compactor [85.5 h]; Labor [1425 h]; Driver [285 h]; Eq. Operator [190 h]; Depth: > 2.5 m [529.3] | 18,901.67 | A6450 | TSE | TSE |
|  | 2 | **Pipe Encasement** |  | 2026-06-02 | 2026-06-17 |  |  |  |  |  |  |  |  |  |
| JDH4-02-007-CN-4470 |  | Encasement for Pipes [Road 10 ] | 7d | 2026-06-02 A | 2026-06-17 A | JDH4-02-007-CN-4190, JDH4-02-007-CN-3920, JDH4-02-007-CN-5220, JDH4-02-007-CN-5850 | 100% | 2027-01-19 | 2027-01-26 | Labor [280 h]; Carpenter [70 h]; Mason [70 h]; Pipe encasement dia 500 mm [41.54] | 9,368.07 | A6610 | TSE | TSE |

| ID | WBS | Activity | Duration | Start | Finish | Predecessors | Complete | Planned start | Planned finish | Resources | Cost | Old Activity ID | JDH4-02-007 | Construction |
| --- | --- | --- | --- | --- | --- | --- | --- | --- | --- | --- | --- | --- | --- | --- |
|  | 3 | **Valves** |  | 2026-05-20 | 2026-06-04 |  |  |  |  |  |  |  |  |  |
| JDH4-02-007-CN-4540 |  | Installation of Gate Valves [Road 10 ] | 5d | 2026-05-20 A | 2026-06-04 A | JDH4-02-007-CN-4190 | 100% | 2027-01-19 | 2027-01-24 | Labor [50 h]; Skilled Labor [50 h]; Pipe-Laying Worker [50 h]; Gate valves dia (200) mm on pipe dia (200) mm . [0.67] | 3,734.71 | A6760 | TSE | TSE |
| JDH4-02-007-CN-4590 |  | Installation of Air Valves [Road 10 ] | 6d | 2026-05-21 A | 2026-06-04 A | JDH4-02-007-CN-4540 | 100% | 2027-01-25 | 2027-01-31 | Labor [60 h]; Skilled Labor [60 h]; Pipe-Laying Worker [60 h]; Air valves with dia 50 mm on pipe dia (315 mm) . [0.67] | 7,253.64 | A6970 | TSE | TSE |
|  | 4 | **Potable Network** |  | 2026-06-10 | 2026-07-02 |  |  |  |  |  |  |  |  |  |
|  | 1 | **Pipe Works** |  | 2026-06-10 | 2026-06-26 |  |  |  |  |  |  |  |  |  |
| JDH4-02-007-CN-3370 |  | Excavation and Compaction (FDT) [Road 10 ] | 17d | 2026-06-10 A | 2026-06-13 A | JDH4-02-007-CN-4050, JDH4-02-007-CN-3480 | 100% | 2026-11-17 | 2026-12-07 | Excavator [210 h]; Water Tanker [210 h]; Truck [420 h]; Labor [840 h]; Driver [210 h]; Eq. Operator [210 h]; Depth: 0.0m - 1.5m [63.65] | 2,049.15 | A4410 | POT | PW |
| JDH4-02-007-CN-3440 |  | Sand Bedding [Road 10 ] | 15d | 2026-06-14 A | 2026-06-15 A | JDH4-02-007-CN-3370, JDH4-02-007-CN-3660 | 100% | 2026-12-07 | 2026-12-24 | Loader [70 h]; Truck [140 h]; Labor [140 h]; Driver [140 h]; Eq. Operator [140 h]; Depth: 1.51m - 2.5m [63.65] | 1,024.57 | A4490 | POT | PW |
| JDH4-02-007-CN-3510 |  | Installation of HDPE Pipe [Road 10 ] | 14d | 2026-06-17 A | 2026-06-19 A | JDH4-02-007-CN-3440 | 100% | 2026-12-24 | 2027-01-10 | Excavator [160 h]; Crane [160 h]; Labor [480 h]; Eq. Operator [160 h]; Plumber [160 h]; Pipe-Laying Worker [160 h]; Depth: > 2.5 [63.65] | 10,245.73 | A4570 | POT | PW |
| JDH4-02-007-CN-3580 |  | Initial Pressure Test [Road 10 ] | 5d | 2026-06-19 A | 2026-06-21 A | JDH4-02-007-CN-3510 | 100% | 2027-01-10 | 2027-01-16 | Labor [50 h]; Skilled Labor [50 h]; Depth: 0.0m - 1.5m [63.65] | 4,098.29 | A4650 | POT | PW |
| JDH4-02-007-CN-3650 |  | Sand Cover & Warning Tape [Road 10 ] | 9d | 2026-06-21 A | 2026-06-24 A | JDH4-02-007-CN-3580, JDH4-02-007-CN-4590 | 100% | 2027-01-16 | 2027-01-26 | Labor [140 h]; Skilled Labor [140 h]; Depth: > 1.5m [63.65] | 1,024.57 | A4730 | POT | PW |
| JDH4-02-007-CN-3720 |  | Backfilling [Road 10 ] | 9d | 2026-06-22 A | 2026-06-26 A | JDH4-02-007-CN-3650 SS, JDH4-02-007-CN-4710 | 100% | 2027-01-16 | 2027-01-26 | Bulldozer [97.5 h]; Truck [130 h]; Compactor [39 h]; Labor [650 h]; Driver [130 h]; Eq. Operator [130 h]; Depth > 2.5 m [63.65] | 2,049.15 | A4810 | POT | PW |
|  | 2 | **Pipe Encasement** |  | 2026-06-21 | 2026-06-24 |  |  |  |  |  |  |  |  |  |
| JDH4-02-007-CN-3790 |  | Encasement for Pipes [Road 10 ] | 5d | 2026-06-21 A | 2026-06-24 A | JDH4-02-007-CN-3510, JDH4-02-007-CN-4470 | 100% | 2027-01-04 | 2027-01-09 | Labor [40 h]; Carpenter; Mason [50 h]; Pipe encasement diameter 250 mm [8.04] | 1,679.34 | A4950 | POT | PW |
|  | 3 | **Valves** |  | 2026-06-27 | 2026-06-30 |  |  |  |  |  |  |  |  |  |
| JDH4-02-007-CN-3860 |  | Installation of Gate Valves [Road 10 ] | 6d | 2026-06-27 A | 2026-06-30 A | JDH4-02-007-CN-3510, JDH4-02-007-CN-4590 | 100% | 2027-01-09 | 2027-01-16 | Labor [60 h]; Skilled Labor [60 h]; Pipe-Laying Worker [60 h]; Gate valves dia (250) mm on pipe dia (250) mm . [0.67] | 2,628.13 | A5090 | POT | PW |
|  | 5 | **Valve Chambers** |  | 2026-06-24 | 2026-07-02 |  |  |  |  |  |  |  |  |  |
| JDH4-02-007-CN-4640 |  | Construction of Air Valve Chambers [Road 10 ] | 8d | 2026-06-24 A | 2026-07-02 A | JDH4-02-007-CN-3860 SS, JDH4-02-007-CN-3790, JDH4-02-007-CN-4590, JDH4-02-007-CN-5250 | 100% | 2027-01-03 | 2027-01-11 | Excavator [80 h]; Labor [80 h]; Skilled Labor [80 h]; Eq. Operator [80 h]; Air valve chamber; on 315 mm dia pipeline Depth 1.5 - 4.0m [0.67] | 37,845.08 | A7150 | POT | PW |
|  | 5 | **Electrical Works** |  | 2026-07-04 | 2026-10-03 |  |  |  |  |  |  |  |  |  |
|  | 1 | **MV & LV Cables** |  | 2026-09-16 | 2026-10-03 |  |  |  |  |  |  |  |  |  |
|  | 2 | **Low Voltage Cable** |  | 2026-09-16 | 2026-10-03 |  |  |  |  |  |  |  |  |  |
| JDH4-02-007-CN-2670 |  | Excavation for Low Voltage Cable [Road 10 ] | 11d | 2026-09-16 A | 2026-09-24 A | JDH4-02-007-CN-3510 | 100% | 2026-10-14 | 2026-10-26 | Excavator [110 h]; Truck [110 h]; Labor [110 h]; Driver [110 h]; Eq. Operator [110 h]; Excavation for Low Voltage Cable [174.2] | 9,839.72 | A3066 | STL | EW |
| JDH4-02-007-CN-2680 |  | Installation of Low Voltage Cables [Road 10 ] | 11d | 2026-09-23 A | 2026-10-03 A | JDH4-02-007-CN-2670, JDH4-02-007-CN-4640, JDH4-02-007-CN-3010, JDH4-02-007-CN-2970 | 100% | 2026-10-27 | 2026-11-08 | Excavator [40 h]; Truck [40 h]; Bobcat [40 h]; Compactor [12 h]; Labor [80 h]; Driver [40 h]; Eq. Operator [120 h]; Electrician [40 h]; Cables, Copper, (4Cx95mm²,Cu/XLPE/SWA/PVC + 1x50mm² PVC/ECC). [113.9] | 26,794.06 | A3070 | STL | EW |
|  | 2 | **Telecommunication** |  | 2026-07-04 | 2026-08-21 |  |  |  |  |  |  |  |  |  |
| JDH4-02-007-CN-3120 |  | Installation Road Crossing R/F 6 way 50mm HDPE Pipe [Road 10 ] | 19d | 2026-07-04 A | 2026-08-03 A | JDH4-02-007-CN-2670 | 100% | 2027-01-05 | 2027-01-26 | Truck [90 h]; Bobcat [90 h]; Compactor [27 h]; Labor [90 h]; Driver [90 h]; Eq. Operator [90 h]; Carpenter [90 h]; Steel Fixer [90 h]; Mason [90 h]; Electrician [90 h]; Installation Road Crossing R/F 6 way 50mm HDPE Pipe [269.34] | 76,068.62 | A3900 | TEL | EW |
| JDH4-02-007-CN-3190 |  | Installation Road Crossing Un R/F 6 way 50mm HDPE Pipe [Road 10 ] | 16d | 2026-07-12 A | 2026-08-04 A | JDH4-02-007-CN-3120, JDH4-02-007-CN-3720, JDH4-02-007-CN-4400, JDH4-02-007-CN-3710, JDH4-02-007-CN-4750, JDH4-02-007-MS-1080 | 100% | 2027-02-09 | 2027-03-01 | Truck [30 h]; Bobcat [30 h]; Compactor [9 h]; Labor [30 h]; Driver [30 h]; Eq. Operator [30 h]; Carpenter [30 h]; Steel Fixer [30 h]; Mason [30 h]; Electrician [30 h]; Installation Road Crossing Un R/F 6 way 50mm HDPE Pipe [8.04] | 3,406.06 | A3990 | TEL | EW |
| JDH4-02-007-CN-3230 |  | Installation of 2 x 32 mm diameter HDPE ducts [Road 10 ] | 17d | 2026-07-25 A | 2026-08-21 A | JDH4-02-007-CN-3190, JDH4-02-007-CN-2680, JDH4-02-007-CN-2370 | 100% | 2027-03-16 | 2027-04-05 | Truck [170 h]; Bobcat [170 h]; Compactor [51 h]; Labor [170 h]; Driver [170 h]; Eq. Operator [170 h]; Carpenter [170 h]; Steel Fixer [170 h]; Mason [170 h]; Electrician [170 h]; 2 x 32 mm diameter HDPE ducts [538.68] | 70,997.38 | A4050 | TEL | EW |
| JDH4-02-007-CN-3300 |  | Installation of Manholes [Road 10 ] | 10d | 2026-07-25 A | 2026-08-11 A | JDH4-02-007-CN-3230, JDH4-02-007-CN-2680, JDH4-02-007-CN-2680 FF, JDH4-02-007-CN-3240 | 100% | 2027-04-05 | 2027-04-17 | Truck [30 h]; Compactor [9 h]; Skilled Labor [30 h]; Driver [30 h]; Eq. Operator [30 h]; Steel Fixer [30 h]; Mason [30 h]; Plumber [30 h]; Manhole type 2 (1500*1200*1200) mm [2.01] | 17,030.29 | A4160 | TEL | EW |

| ID | WBS | Activity | Duration | Start | Finish | Predecessors | Complete | Planned start | Planned finish | Resources | Cost | Old Activity ID | JDH4-02-007 | Construction |
| --- | --- | --- | --- | --- | --- | --- | --- | --- | --- | --- | --- | --- | --- | --- |
|  | 8 | **Out of Zone** |  | 2026-07-18 | 2026-10-03 |  |  |  |  |  |  |  |  |  |
|  | 5 | **Electrical Works** |  | 2026-07-18 | 2026-10-03 |  |  |  |  |  |  |  |  |  |
|  | 1 | **LV Cables** |  | 2026-07-18 | 2026-10-03 |  |  |  |  |  |  |  |  |  |
|  | 2 | **Low Voltage Cable** |  | 2026-07-18 | 2026-10-03 |  |  |  |  |  |  |  |  |  |
| JDH4-02-007-CN-2690 |  | Excavation for Low Voltage Cable [Out of Zone ] | 21d | 2026-07-18 A | 2026-09-30 A | JDH4-02-007-CN-2670 SS, JDH4-02-007-CN-2410 | 100% | 2026-12-23 | 2027-01-16 | Excavator [140 h]; Truck [140 h]; Labor [140 h]; Driver [140 h]; Eq. Operator [140 h]; Excavation for Low Voltage Cable [234.5] | 13,245.78 | A3078 | STL | EW |
| JDH4-02-007-CN-2700 |  | Installation of Low Voltage Cables [Out of Zone ] | 21d | 2026-07-26 A | 2026-10-03 A | JDH4-02-007-CN-2690 | 100% | 2027-01-17 | 2027-02-09 | Excavator [120 h]; Truck [120 h]; Bobcat [120 h]; Compactor [36 h]; Labor [240 h]; Driver [120 h]; Eq. Operator [360 h]; Electrician [120 h]; Cables, Copper, (4Cx50mm²,Cu/XLPE/SWA/PVC + 1x25mm² PVC/ECC). [154.1] | 36,250.79 | A3080 | STL | EW |
|  | 6 | **Sewage Lift Station** |  | 2026-04-22 | 2026-12-29 |  |  |  |  |  |  |  |  |  |
|  | 1 | **Site Works** |  | 2026-05-14 | 2026-07-30 |  |  |  |  |  |  |  |  |  |
| JDH4-02-007-CN-5910 |  | Excavation [Sewage Lift Station ] | 20d | 2026-05-14 A | 2026-05-16 A | JDH4-02-007-EN-1680, JDH4-02-007-EN-1690, JDH4-02-007-EN-1710, JDH4-02-007-EN-1730, JDH4-02-007-EN-1770, JDH4-02-007-EN-1700, JDH4-02-007-CN-3200, JDH4-02-007-CN-4120 SS+2d, JDH4-02-007-PR-2430, JDH4-02-007-PR-2559 | 100% | 2026-11-12 | 2026-12-06 | Excavator [210 h]; Truck [210 h]; Labor [210 h]; Driver [210 h]; Eq. Operator [210 h]; Excavation [83.75] | 3,942.2 | A9900 | STA | SL |
| JDH4-02-007-CN-5930 |  | Install gravel beddings [Sewage Lift Station ] | 10d | 2026-06-06 A | 2026-06-08 A | JDH4-02-007-EN-1680, JDH4-02-007-EN-1690, JDH4-02-007-EN-1710, JDH4-02-007-EN-1730, JDH4-02-007-CN-5920, JDH4-02-007-EN-1770, JDH4-02-007-EN-1700, JDH4-02-007-PR-1500, JDH4-02-007-PR-1470 | 100% | 2026-11-30 | 2026-12-12 | Truck [210 h]; Bobcat [210 h]; Compactor [63 h]; Labor [840 h]; Skilled Labor [210 h]; Driver [210 h]; Eq. Operator [210 h]; gravel beddings [33.5] | 4,730.64 | A9940 | STA | SL |
| JDH4-02-007-CN-5920 |  | Backfilling [Sewage Lift Station ] | 11d | 2026-06-08 A | 2026-07-30 A | JDH4-02-007-CN-5910 SS+4d | 100% | 2026-11-17 | 2026-11-30 | Bulldozer [82.5 h]; Truck [110 h]; Labor [110 h]; Driver [110 h]; Eq. Operator [110 h]; Backfilling [33.5] | 1,576.88 | A9930 | STA | SL |
|  | 2 | **Concrete Works** |  | 2026-05-07 | 2026-05-24 |  |  |  |  |  |  |  |  |  |
| JDH4-02-007-CN-1010 |  | Lean concrete under the foundations [Sewage Lift Station ] | 8d | 2026-05-07 A | 2026-05-07 A | JDH4-02-007-PR-3110, JDH4-02-007-CN-5930 | 100% | 2026-12-01 | 2026-12-10 | Labor [30 h]; Mason [30 h]; Lean concrete under the foundations [4.02] | 2,081.48 | A10005 | STA | SL |
| JDH4-02-007-CN-1020 |  | Footings For Sewage Lift Station [Sewage Lift Station ] | 8d | 2026-05-09 A | 2026-05-09 A | JDH4-02-007-CN-1010, JDH4-02-007-CN-5930 | 100% | 2026-12-10 | 2026-12-20 | Labor [200 h]; Steel Fixer [50 h]; Mason [50 h]; Footings For Sewage Lift Station [6.7] | 25,230.06 | A10010 | STA | SL |
| JDH4-02-007-CN-1030 |  | Cast concrete for trench Including Mastic sealant [Sewage Lift Station ] | 11d | 2026-05-10 A | 2026-05-24 A | JDH4-02-007-CN-1020 | 100% | 2026-12-20 | 2027-01-02 | Labor [440 h]; Steel Fixer [110 h]; Mason [110 h]; Cast concrete for trench Including Mastic sealant [10.72] | 40,368.09 | A10030 | STA | SL |
|  | 4 | **Thermal & Moisture Protection** |  | 2026-05-31 | 2026-06-07 |  |  |  |  |  |  |  |  |  |
| JDH4-02-007-CN-1050 |  | Install 250 micron polyethylene sheet under slab on grade and footings [Sewage Lift Station ] | 5d | 2026-05-31 A | 2026-06-01 A | JDH4-02-007-CN-1030, JDH4-02-007-PR-2370 | 100% | 2026-12-24 | 2026-12-30 | Labor [50 h]; Skilled Labor [50 h]; Mason [50 h]; Install 250 micron polyethylene sheet under slab on grade and footings [40.2] | 2,270.71 | A10110 | STA | SL |
| JDH4-02-007-CN-1060 |  | Applying 2 Coats of Bituminous Paint [Sewage Lift Station ] | 5d | 2026-06-01 A | 2026-06-07 A | JDH4-02-007-CN-1050 | 100% | 2026-12-30 | 2027-01-05 | Labor [100 h]; Skilled Labor [50 h]; Applying 2 Coats of Bituminous Paint [167.5] | 4,730.64 | A10130 | STA | SL |
|  | 3 | **Metals** |  | 2026-09-26 | 2026-10-01 |  |  |  |  |  |  |  |  |  |
| JDH4-02-007-CN-1040 |  | Install Stainless steel [Sewage Lift Station ] | 6d | 2026-09-26 A | 2026-10-01 A | JDH4-02-007-CN-1020, JDH4-02-007-PR-1860 | 100% | 2026-10-25 | 2026-10-31 | Labor [240 h]; Skilled Labor [120 h]; Steel Fixer [60 h]; Install Stainless steel [5.36] | 10,092.02 | A10070 | STA | SL |
|  | 5 | **Mechanical Works** |  | 2026-04-22 | 2026-11-01 |  |  |  |  |  |  |  |  |  |
|  | 1 | **Pipes & Fittings** |  | 2026-04-23 | 2026-09-30 |  |  |  |  |  |  |  |  |  |
| JDH4-02-007-CN-1090 |  | Installation of Pipes & Fittings [Sewage Lift Station ] | 14d | 2026-04-23 A | 2026-08-10 A | JDH4-02-007-PR-2310, JDH4-02-007-CN-1020, JDH4-02-007-PR-2559 | 100% | 2026-12-13 | 2026-12-29 | Excavator [140 h]; Truck [140 h]; Skilled Labor [140 h]; Driver [140 h]; Eq. Operator [140 h]; Steel Fixer [140 h]; Plumber [140 h]; Double flanged eccentric reducer DN250/pump delivery [2.9]; Double flanged pipe piece DN250 - different lengths [2.9]; Double flanged elbow DN250 [2.9] | 30,587.94 | A10300 | STA | SL |
| JDH4-02-007-CN-1100 |  | Installation of Gate Valves [Sewage Lift Station ] | 9d | 2026-04-23 A | 2026-08-18 A | JDH4-02-007-CN-1090, JDH4-02-007-CN-1040 | 100% | 2026-12-29 | 2027-01-09 | Labor [120 h]; Skilled Labor [120 h]; Plumber [120 h]; Pipe-Laying Worker [120 h]; Manually operated Gate Valve DN250 [1.34]; Manually operated Gate Valve DN150 [1.34]; Manually operated Gate Valve DN80 [1.34] | 29,014.56 | A10370 | STA | SL |
| JDH4-02-007-CN-1120 |  | Installation of Dismantling Joints [Sewage Lift Station ] | 8d | 2026-04-25 A | 2026-09-24 A | JDH4-02-007-CN-1100, JDH4-02-007-CN-1060 | 100% | 2027-01-09 | 2027-01-18 | Skilled Labor [80 h]; Plumber [80 h]; Pipe-Laying Worker [80 h]; Dismantling Joint DN250 [1.68]; Dismantling Joint DN150 [1.68] | 13,876.54 | A10430 | STA | SL |
| JDH4-02-007-CN-1130 |  | Installation of Non Return Valve DN250 [Sewage Lift Station ] | 9d | 2026-04-25 A | 2026-04-26 A | JDH4-02-007-CN-1120 | 100% | 2027-01-18 | 2027-01-28 | Skilled Labor [90 h]; Plumber [90 h]; Pipe-Laying Worker [90 h]; Non Return Valve DN250 [1.34] | 9,461.27 | A10470 | STA | SL |
| JDH4-02-007-CN-1140 |  | Installation of Air Valve DN60 [Sewage Lift Station ] | 8d | 2026-04-25 A | 2026-04-26 A | JDH4-02-007-CN-1130 | 100% | 2027-01-28 | 2027-02-07 | Skilled Labor [80 h]; Plumber [80 h]; Pipe-Laying Worker [80 h]; Air Valve DN60 [2.01] | 11,353.53 | A10510 | STA | SL |
| JDH4-02-007-CN-1160 |  | Installation of Odors scrubbing system [Sewage Lift Station ] | 7d | 2026-07-05 A | 2026-08-23 A | JDH4-02-007-CN-1150, JDH4-02-007-CN-1060 | 100% | 2027-01-02 | 2027-01-09 | Skilled Labor [70 h]; Plumber [70 h]; Pipe-Laying Worker [70 h]; Odors scrubbing system [0.67] | 157,687.85 | A10590 | STA | SL |
| JDH4-02-007-CN-1150 |  | Installation of Bauer Coupling DN150 [Sewage Lift Station ] | 6d | 2026-09-15 A | 2026-09-30 A | JDH4-02-007-CN-1140, JDH4-02-007-PR-2640 | 100% | 2026-11-10 | 2026-11-16 | Skilled Labor [60 h]; Plumber [60 h]; Pipe-Laying Worker [60 h]; Bauer Coupling DN150 [0.67] | 4,730.64 | A10550 | STA | SL |

| ID | WBS | Activity | Duration | Start | Finish | Predecessors | Complete | Remaining | Planned start | Planned finish | Total float | Free float | Resources | Cost | Old Activity ID | JDH4-02-007 | Construction |
| --- | --- | --- | --- | --- | --- | --- | --- | --- | --- | --- | --- | --- | --- | --- | --- | --- | --- |
|  | 2 | **Control Equipment** |  | 2026-04-22 | 2026-09-30 |  |  |  |  |  |  |  |  |  |  |  |  |
| JDH4-02-007-CN-1200 |  | Installation of Screening Container [Sewage Lift Station ] | 8d | 2026-04-22 A | 2026-04-25 A | JDH4-02-007-CN-1190, JDH4-02-007-PR-2250 | 100% |  | 2027-02-04 | 2027-02-14 |  |  | Skilled Labor [80 h]; Plumber [80 h]; Pipe-Laying Worker [80 h]; Screening Container [0.67] | 9,461.27 | A10730 | STA | SL |
| JDH4-02-007-CN-1190 |  | Installation of Air Vents [Sewage Lift Station ] | 7d | 2026-09-02 A | 2026-09-07 A | JDH4-02-007-CN-1180, JDH4-02-007-PR-2150 | 100% |  | 2026-12-23 | 2026-12-30 |  |  | Skilled Labor [70 h]; Plumber [70 h]; Pipe-Laying Worker [70 h]; Complete the works of air vent at wet well. [1]; Complete the works of air vent at screen chamber. [1] | 4,730.64 | A10700 | STA | SL |
| JDH4-02-007-CN-1180 |  | Installation of Manually operated davit crane (portable) [Sewage Lift Station ] | 8d | 2026-09-03 A | 2026-09-07 A | JDH4-02-007-CN-1090, JDH4-02-007-PR-2430, JDH4-02-007-PR-3100 | 100% |  | 2026-12-14 | 2026-12-22 |  |  | Truck [80 h]; Crane [80 h]; Labor [240 h]; Skilled Labor [80 h]; Driver [80 h]; Eq. Operator [80 h]; Electrician [80 h]; Manually operated davit crane (portable) [0.67] | 94,612.71 | A10630 | STA | SL |
| JDH4-02-007-CN-1210 |  | Installation of Baffle Plates [Sewage Lift Station ] | 7d | 2026-09-23 A | 2026-09-30 A | JDH4-02-007-CN-1200, JDH4-02-007-CN-5880 | 100% |  | 2026-10-25 | 2026-11-01 |  |  | Skilled Labor [70 h]; Plumber [70 h]; Electrician [70 h]; Pipe-Laying Worker [70 h]; Baffle Plates [0.67] | 9,461.27 | A10760 | STA | SL |
|  | 3 | **Interface Works** |  | 2026-09-02 | 2026-09-23 |  |  |  |  |  |  |  |  |  |  |  |  |
| JDH4-02-007-CN-1220 |  | Interfacing Works [Sewage Lift Station ] | 3d | 2026-09-02 A | 2026-09-23 A | JDH4-02-007-CN-1180 | 100% |  | 2026-10-14 | 2026-10-17 |  |  | Skilled Labor [70 h]; Plumber [70 h]; Electrician [70 h]; Between wet well and valve chamber [0.67]; Between valve chamber and site fence [0.67] | 63,075.14 | A10820 | STA | SL |
|  | 4 | **Anti Water Hammer Equipment** |  | 2026-10-01 | 2026-10-25 |  |  |  |  |  |  |  |  |  |  |  |  |
| JDH4-02-007-CN-1230 |  | Installation of Anti-Water Hammer Equipment [Sewage Lift Station ] | 4d | 2026-10-01 A | 2026-10-25 | JDH4-02-007-CN-1220 | 80% | 4d | 2026-10-11 | 2026-10-14 | 120d | 0d | Skilled Labor [70 h]; Plumber [70 h]; Electrician [70 h]; Anti-Water Hammer Equipment [0.67] | 883,051.97 | A10850 | STA | SL |
|  | 5 | **Air Conditioning & Ventilation** |  | 2026-09-28 | 2026-10-01 |  |  |  |  |  |  |  |  |  |  |  |  |
| JDH4-02-007-CN-1240 |  | Installation of Air Conditioning [Sewage Lift Station ] | 6d | 2026-09-28 A | 2026-10-01 A | JDH4-02-007-CN-1230, JDH4-02-007-PR-2400, JDH4-02-007-CN-1210 | 100% |  | 2026-12-20 | 2026-12-26 |  |  | Skilled Labor [60 h]; Plumber [60 h]; Electrician [60 h]; Air Conditioning [1.34] | 18,922.54 | A10890 | STA | SL |
|  | 6 | **Fuel System** |  | 2026-08-15 | 2026-08-25 |  |  |  |  |  |  |  |  |  |  |  |  |
| JDH4-02-007-CN-1260 |  | Installation of Bulk Fuel storage tank, 2500 Liter (7 Days of storage) [Sewage Lift Station ] | 5d | 2026-08-15 A | 2026-08-25 A | JDH4-02-007-CN-1230, JDH4-02-007-PR-1890, JDH4-02-007-PR-1890 FF | 100% |  | 2027-01-13 | 2027-01-18 |  |  | Skilled Labor [50 h]; Plumber [50 h]; Electrician [50 h]; Bulk Fuel storage tank, 2500 Liter (7 Days of storage) [0.67] | 18,922.54 | A10930 | STA | SL |
| JDH4-02-007-CN-1270 |  | Installation of Fuel pump set , 1 duty and 1 standby, Capacity 100 L/h, Head 1 Bar [Sewage Lift Station ] | 6d | 2026-08-15 A | 2026-08-25 A | JDH4-02-007-CN-1260 | 100% |  | 2027-01-19 | 2027-01-25 |  |  | Skilled Labor [60 h]; Plumber [60 h]; Electrician [60 h]; Fuel pump set , 1 duty and 1 standby, Capacity 100 L/h, Head 1 Bar [0.67] | 47,306.36 | A10960 | STA | SL |
| JDH4-02-007-CN-1280 |  | Pipes and Fitting Works [Sewage Lift Station ] | 6d | 2026-08-15 A | 2026-08-25 A | JDH4-02-007-CN-1270 | 100% |  | 2027-01-26 | 2027-02-01 |  |  | Skilled Labor [60 h]; Plumber [60 h]; Electrician [60 h]; Pipes and Fitting Works [0.67] | 9,461.27 | A10980 | STA | SL |
|  | 7 | **Fire Fighting** |  | 2026-09-23 | 2026-09-26 |  |  |  |  |  |  |  |  |  |  |  |  |
| JDH4-02-007-CN-1290 |  | Installation of Fire fighting for electrical room which has a volume of about 62 m3 [Sewage Lift Station ] | 5d | 2026-09-23 A | 2026-09-26 A | JDH4-02-007-CN-1270, JDH4-02-007-PR-2340, JDH4-02-007-PR-2340 FF | 100% |  | 2026-12-20 | 2026-12-24 |  |  | Skilled Labor [50 h]; Plumber [50 h]; Electrician [50 h]; Fire fighting for electrical room which has a volume of about 62 m3 [0.67] | 47,306.36 | A11030 | STA | SL |
| JDH4-02-007-CN-1300 |  | Installation of Foam type - wheeled type 20 Gallon capacity-ref. FE-01 [Sewage Lift Station ] | 3d | 2026-09-24 A | 2026-09-26 A | JDH4-02-007-CN-1290, JDH4-02-007-CN-1210, JDH4-02-007-CN-1240 | 100% |  | 2026-12-27 | 2026-12-29 |  |  | Skilled Labor [50 h]; Plumber [50 h]; Electrician [50 h]; Foam type - wheeled type 20 Gallon capacity-ref. FE-01 [0.67] | 9,461.27 | A11060 | STA | SL |
|  | 8 | **Pumps** |  | 2026-09-23 | 2026-11-01 |  |  |  |  |  |  |  |  |  |  |  |  |
| JDH4-02-007-CN-1070 |  | Installation of Submersible pump [Sewage Lift Station ] | 6d | 2026-09-23 A | 2026-11-01 | JDH4-02-007-CN-1290 | 25% | 6d | 2026-12-20 | 2026-12-26 | 120d | 12d | Labor [60 h]; Skilled Labor [60 h]; Plumber [60 h]; Submersible pump [1.34] | 233,378.02 | A10180 | STA | SL |
|  | 6 | **Electrical Works** |  | 2026-09-01 | 2026-12-29 |  |  |  |  |  |  |  |  |  |  |  |  |
|  | 1 | **Main Distribution Board** |  | 2026-10-03 | 2026-11-05 |  |  |  |  |  |  |  |  |  |  |  |  |
| JDH4-02-007-CN-1310 |  | Installation of Main Distribution Board/MCC Panel [Sewage Lift Station ] | 7d | 2026-10-03 A | 2026-10-28 | JDH4-02-007-CN-1220, JDH4-02-007-PR-2650 | 50% | 7d | 2026-10-18 | 2026-10-25 | 102d | 0d | Skilled Labor [70 h]; Plumber [70 h]; Electrician [70 h]; Main Distribution Board/MCC Panel [0.67] | 75,690.17 | A11110 | STA | SL |
| JDH4-02-007-CN-1320 |  | Installation of Panel Board [Sewage Lift Station ] | 7d | 2026-10-03 A | 2026-11-05 | JDH4-02-007-CN-1310, JDH4-02-007-PR-2710, JDH4-02-007-PR-2510 | 50% | 7d | 2026-10-26 | 2026-11-02 | 105d | 3d | Skilled Labor [70 h]; Plumber [70 h]; Electrician [70 h]; Panel Board [0.67] | 28,383.81 | A11150 | STA | SL |

| ID | WBS | Activity | Duration | Start | Finish | Predecessors | Complete | Remaining | Planned start | Planned finish | Total float | Free float | Resources | Cost | Old Activity ID | JDH4-02-007 | Construction |
| --- | --- | --- | --- | --- | --- | --- | --- | --- | --- | --- | --- | --- | --- | --- | --- | --- | --- |
|  | 2 | **Local Control Panel** |  | 2026-10-04 | 2026-11-21 |  |  |  |  |  |  |  |  |  |  |  |  |
| JDH4-02-007-CN-1330 |  | Installation of MCP-LP-01 [Sewage Lift Station ] | 10d | 2026-10-04 A | 2026-11-09 | JDH4-02-007-CN-1310 | 50% | 10d | 2026-10-26 | 2026-11-05 | 102d | 0d | Skilled Labor [60 h]; Plumber [60 h]; Electrician [60 h]; MCP-LP-01 [0.67] | 25,230.06 | A11190 | STA | SL |
| JDH4-02-007-CN-1350 |  | Installation of MCP-LP-02 [Sewage Lift Station ] | 5d | 2026-10-04 A | 2026-11-15 | JDH4-02-007-CN-1330 | 50% | 5d | 2026-11-07 | 2026-11-11 | 108d | 0d | Skilled Labor [60 h]; Plumber [60 h]; Electrician [60 h]; MCP-LP-02 [0.67] | 25,230.06 | A11210 | STA | SL |
| JDH4-02-007-CN-1360 |  | Installation of OD-CP [Sewage Lift Station ] | 5d | 2026-10-04 A | 2026-11-16 | JDH4-02-007-CN-1350 | 50% | 0d | 2026-11-12 | 2026-11-17 | 108d | 0d | Skilled Labor [60 h]; Plumber [60 h]; Electrician [60 h]; OD-CP [0.67] | 28,383.81 | A11240 | STA | SL |
| JDH4-02-007-CN-1370 |  | Installation of FP-CP [Sewage Lift Station ] | 5d | 2026-10-04 A | 2026-11-21 | JDH4-02-007-CN-1360, JDH4-02-007-CN-1300, JDH4-02-007-CN-1070, JDH4-02-007-CN-1280 | 50% | 5d | 2026-11-18 | 2026-11-23 | 108d | 6d | Skilled Labor [60 h]; Plumber [60 h]; Electrician [60 h]; FP-CP [0.67] | 28,383.81 | A11260 | STA | SL |
|  | 3 | **Diesel Generator** |  | 2026-09-15 | 2026-09-17 |  |  |  |  |  |  |  |  |  |  |  |  |
| JDH4-02-007-CN-1380 |  | Installation of Standby Diesel Generator [Sewage Lift Station ] | 10d | 2026-09-15 A | 2026-09-17 A | JDH4-02-007-CN-1330, JDH4-02-007-PR-2750 | 100% |  | 2026-12-29 | 2027-01-09 |  |  | Skilled Labor [70 h]; Electrician [70 h]; Standby Diesel Generator [0.67] | 75,690.17 | A11310 | STA | SL |
|  | 4 | **Power Factor Correction Capacitor Bank** |  | 2026-10-05 | 2026-11-17 |  |  |  |  |  |  |  |  |  |  |  |  |
| JDH4-02-007-CN-1390 |  | Installation of Power Factor Correction Capacitor Bank [Sewage Lift Station ] | 7d | 2026-10-05 A | 2026-11-17 | JDH4-02-007-CN-1380, JDH4-02-007-CN-1320, JDH4-02-007-PR-2880 | 50% | 7d | 2026-11-07 | 2026-11-14 | 102d | 0d | Skilled Labor [70 h]; Electrician [70 h]; Power Factor Correction Capacitor Bank [0.67] | 22,076.3 | A11350 | STA | SL |
|  | 5 | **Low-Voltage Electrical Power Conductors and Cables** |  | 2026-09-29 | 2026-11-28 |  |  |  |  |  |  |  |  |  |  |  |  |
| JDH4-02-007-CN-1410 |  | Installation of Low Voltage Cables [Sewage Lift Station ] | 9d | 2026-09-29 A | 2026-11-28 | JDH4-02-007-CN-1390, JDH4-02-007-PR-2890, JDH4-02-007-PR-2950 | 50% | 9d | 2026-11-15 | 2026-11-24 | 102d | 0d | Excavator [90 h]; Truck [90 h]; Labor [180 h]; Driver [90 h]; Eq. Operator [90 h]; Electrician [90 h]; 4Cx 50mm² + 1Cx25mm² Cu/XLPE/SWA/PVC [27.64]; 4Cx 16mm² + 1Cx16mm² Cu/XLPE/SWA/PVC [27.64]; 4Cx 6mm² + 1Cx4mm² Cu/XLPE/SWA/PVC [27.64]; 4Cx 10mm² + 1Cx10mm² Cu/XLPE/PVC [27.64] | 17,535.2 | A11460 | STA | SL |
|  | 6 | **Wiring Devices** |  | 2026-09-02 | 2026-09-07 |  |  |  |  |  |  |  |  |  |  |  |  |
| JDH4-02-007-CN-1420 |  | Installation of Wiring Devices [Sewage Lift Station ] | 5d | 2026-09-02 A | 2026-09-07 A | JDH4-02-007-CN-1410, JDH4-02-007-CN-1370, JDH4-02-007-CN-1160 | 100% |  | 2027-01-17 | 2027-01-21 |  |  | Labor [50 h]; Electrician [50 h]; One way Two gang switch outlet, 230V, 1P, 10A, 60Hz, wall mounted [0.89]; Duplex socket outlet, 230V, 1P, 13A, 60Hz with grounding, wall mounted [0.89]; Industrial socket outlet, 230V, 1P, 30A, 60Hz with grounding, wall mounted [0.89] | 5,044.14 | A11530 | STA | SL |
|  | 7 | **Enclosed Switches and Circuit Breakers** |  | 2026-10-14 | 2026-11-15 |  |  |  |  |  |  |  |  |  |  |  |  |
| JDH4-02-007-CN-1440 |  | Installation of Enclosed Switches and Circuit Breakers [Sewage Lift Station ] | 5d | 2026-10-14 A | 2026-11-15 | JDH4-02-007-CN-1380, JDH4-02-007-PR-2990 | 57% | 5d | 2026-11-10 | 2026-11-15 | 107d | 0d | Labor [50 h]; Electrician [50 h]; 20A, 1P, 60Hz Isolator/disconnect switches IP65 [2.35]; 30A, 3P, 60Hz Isolator/disconnect switches IP65 [2.35] | 8,830.52 | A11610 | STA | SL |
|  | 8 | **Lighting** |  | 2026-09-08 | 2026-09-29 |  |  |  |  |  |  |  |  |  |  |  |  |
| JDH4-02-007-CN-1450 |  | Installation of Lightings [Sewage Lift Station ] | 6d | 2026-09-08 A | 2026-09-29 A | JDH4-02-007-CN-1440 | 100% |  | 2027-01-16 | 2027-01-21 |  |  | Labor [60 h]; Electrician [60 h]; Surfaced/Wall Mounted Luminaire type (L1), 31 watts LED IP65, 230V, 60Hz, 4200 lumens [2.01]; 24 W Emergency Wall mounted Twin head LED emergency light fitting with battery 90 mins backed-up, 230V, 60Hz, 3148 lumens, IP65; ref. Lighting layout (Type EL) [2.01]; 4 meter double arm galvanized steel Lighting pole with 2x98 watts LED Lighting Luminaire (11994 Lumens) 230V, 60Hz. [2.01] | 16,399.53 | A11700 | STA | SL |
|  | 9 | **Grounding and Bonding for Electrical Systems** |  | 2026-11-16 | 2026-11-22 |  |  |  |  |  |  |  |  |  |  |  |  |
| JDH4-02-007-CN-1460 |  | Installation of Grounding Links [Sewage Lift Station ] | 6d | 2026-11-16 | 2026-11-22 | JDH4-02-007-CN-1450, JDH4-02-007-PR-2910 |  |  |  |  | 107d | 0d | Labor [60 h]; Electrician [60 h]; 50 mm² Bare Copper Conductor [8.84]; Grounding Inspection Pit (300mmx300mm) [8.84]; 3.00 meter 20mm dia. Grounding Rod [8.84]; 8 ways Grounding Busbar with disconnect link [8.84]; Telecom Grounding Busbar with disconnect link [8.84] | 18,607.15 | A11790 | STA | SL |
|  | 10 | **Electrical Manholes** |  | 2026-09-02 | 2026-09-08 |  |  |  |  |  |  |  |  |  |  |  |  |
| JDH4-02-007-CN-1470 |  | Installation of Electrical Manholes [Sewage Lift Station ] | 6d | 2026-09-02 A | 2026-09-08 A | JDH4-02-007-CN-1460, JDH4-02-007-PR-2640 | 100% |  | 2027-01-18 | 2027-01-24 |  |  | Labor [60 h]; Electrician [60 h]; Electrical Manhole (EMH-1) 800mm x 800mm x 800mm concrete hand hole with hot dip galvanized heavy-duty steel cover [9.16]; 2x 110 mm UPVC Conduit [9.16]; 2x 160 mm UPVC Conduit [9.16] | 10,723.17 | A11870 | STA | SL |
|  | 11 | **ICT (Data& telephone System)** |  | 2026-10-05 | 2026-12-16 |  |  |  |  |  |  |  |  |  |  |  |  |
| JDH4-02-007-CN-1490 |  | Installation of IDF Cabinet 9U (for data &Telephone) [Sewage Lift Station ] | 10d | 2026-10-05 A | 2026-10-18 A | JDH4-02-007-CN-1470, JDH4-02-007-PR-3100, JDH4-02-007-CN-1420 | 100% |  | 2026-11-25 | 2026-12-06 |  |  | Labor [40 h]; Electrician [40 h]; IDF Cabinet 9U (for data &Telephone) [0.67] | 22,076.3 | A11910 | ICT | SL |
| JDH4-02-007-CN-1500 |  | Installationof Single data/Telephone outlet [Sewage Lift Station ] | 5d | 2026-11-29 | 2026-12-03 | JDH4-02-007-CN-1490 |  |  |  |  | 102d | 0d | Labor [50 h]; Electrician [50 h]; Installationof Single data/Telephone outlet [0.67] | 1,261.5 | A11930 | ICT | SL |
| JDH4-02-007-CN-1510 |  | Installation of Data Switch (24 Port) [Sewage Lift Station ] | 5d | 2026-12-05 | 2026-12-09 | JDH4-02-007-CN-1500 |  |  |  |  | 113d | 0d | Labor [50 h]; Electrician [50 h]; Data Switch (24 Port) [0.67] | 18,922.54 | A11960 | ICT | SL |
| JDH4-02-007-CN-1520 |  | Installation of Fiber optic cable (12 Core single mode). [Sewage Lift Station ] | 6d | 2026-12-10 | 2026-12-16 | JDH4-02-007-CN-1510 |  |  |  |  | 113d | 7d | Labor [60 h]; Electrician [60 h]; Fiber optic cable (12 Core single mode). [13.4] | 1,892.25 | A11990 | ICT | SL |

| ID | WBS | Activity | Duration | Start | Finish | Predecessors | Complete | Remaining | Planned start | Planned finish | Total float | Free float | Resources | Cost | Old Activity ID | JDH4-02-007 | Construction |
| --- | --- | --- | --- | --- | --- | --- | --- | --- | --- | --- | --- | --- | --- | --- | --- | --- | --- |
|  | 12 | **Security System (CCTV System)** |  | 2026-09-20 | 2026-09-27 |  |  |  |  |  |  |  |  |  |  |  |  |
| JDH4-02-007-CN-1530 |  | Installation of 5.0 Megapixel, Fixed bullet IP CCTV camera [Sewage Lift Station ] | 13d | 2026-09-20 A | 2026-09-27 A | JDH4-02-007-CN-1500, JDH4-02-007-PR-2430 | 100% |  | 2027-02-11 | 2027-02-27 |  |  | Labor [130 h]; Electrician [130 h]; 5.0 Megapixel, Fixed bullet IP CCTV camera [4.69] | 198,686.69 | A12030 | ICT | SL |
|  | 13 | **Duct Bank and Handhole For Telecom Network** |  | 2026-09-01 | 2026-10-03 |  |  |  |  |  |  |  |  |  |  |  |  |
| JDH4-02-007-CN-1540 |  | Installation of 2 x 50mm HDPE ducts Bank [Sewage Lift Station ] | 12d | 2026-09-01 A | 2026-10-03 A | JDH4-02-007-CN-1530 | 100% |  | 2027-02-28 | 2027-03-16 |  |  | Labor [60 h]; Electrician [60 h]; 2 x 50mm HDPE ducts Bank [13.4] | 5,046.01 | A12070 | ICT | SL |
| JDH4-02-007-CN-1550 |  | Installation of Handholes (800x800x800 mm) [Sewage Lift Station ] | 5d | 2026-09-01 A | 2026-10-03 A | JDH4-02-007-CN-1540 | 100% |  | 2027-03-17 | 2027-03-22 |  |  | Labor [50 h]; Skilled Labor [50 h]; Electrician [50 h]; Handholes (800x800x800 mm) [0.67] | 3,153.76 | A12090 | ICT | SL |
|  | 14 | **Programmable Logic Controllers** |  | 2026-10-04 | 2026-12-20 |  |  |  |  |  |  |  |  |  |  |  |  |
| JDH4-02-007-CN-1570 |  | Installation of Programmable Logic Controller [Sewage Lift Station ] | 14d | 2026-10-04 A | 2026-12-20 | JDH4-02-007-CN-1540, JDH4-02-007-PR-3150 | 50% | 14d | 2026-12-13 | 2026-12-28 | 102d | 0d | Labor [80 h]; Skilled Labor [40 h]; Electrician [40 h]; Programmable Logic Controller [0.67] | 252,300.56 | A12190 | STA | SL |
|  | 15 | **Process Control Wiring** |  | 2026-10-18 | 2026-12-24 |  |  |  |  |  |  |  |  |  |  |  |  |
| JDH4-02-007-CN-1580 |  | Installation of Process Control Wiring [Sewage Lift Station ] | 4d | 2026-10-18 A | 2026-12-24 | JDH4-02-007-CN-1570, JDH4-02-007-PR-3110, JDH4-02-007-PR-2660 | 40% | 4d | 2027-01-02 | 2027-01-05 | 102d | 0d | Labor [80 h]; Skilled Labor [40 h]; Electrician [40 h]; Process Control Wiring [0.67] | 157,687.85 | A12220 | STA | SL |
|  | 16 | **Instrumentation for Process Systems** |  | 2026-09-17 | 2026-12-29 |  |  |  |  |  |  |  |  |  |  |  |  |
| JDH4-02-007-CN-1600 |  | Installation of Process System [Sewage Lift Station ] | 8d | 2026-09-17 A | 2026-12-29 | JDH4-02-007-CN-1580 SS, JDH4-02-007-PR-3030 | 50% | 8d | 2027-03-27 | 2027-04-04 | 102d | 0d | Labor [180 h]; Skilled Labor [90 h]; Electrician [90 h]; Float Level switches for alarming incase of Low Low / High High/ HIGH/LOW level conditions . [1.51]; Radar level meter [1.51]; Electro magnetic flow meter on the main Header/Suction pipeline with measuring (DN-250) as per mechanical drawings complete with flanges, metering tube, electrodes, indicators, transmitters, converter/ amplifier Units and all accessories. [1.51]; differential pressure switch for measuring the pressure after and before the Odor fans complete with all accessories . [1.51]; pressure gauge with all accessories based on technical specifications [1.51]; pressure switch for high pressure alarm at the pump discharge pipeline complete with all accessories as per specifications to work in good conditions. [1.51]; H2S online analyzer complete with all accessories as per specifications to work in good conditions [1.51]; NEMA 4X type Analogue, Digital & Motorized Control valve Junction Box terminal blocks as shown on the ICA drawings. [1.51] | 182,978.56 | A12340 | STA | SL |
|  | 7 | **Fence Work** |  | 2026-09-23 | 2026-09-27 |  |  |  |  |  |  |  |  |  |  |  |  |
| JDH4-02-007-CN-5890 |  | Installation of Chain Link Fence [Sewage Lift Station ] | 20d | 2026-09-23 A | 2026-09-26 A | JDH4-02-007-CN-1500 | 100% |  | 2027-02-10 | 2027-03-06 |  |  | Excavator [200 h]; Truck [200 h]; Labor [200 h]; Skilled Labor [200 h]; Driver [200 h]; Eq. Operator [200 h]; Carpenter [200 h]; Steel Fixer [200 h]; Chain Link Fence [13.4] | 11,984.28 | A9830 | STA | SL |
| JDH4-02-007-CN-5900 |  | Installation of Pedestrian Gate [Sewage Lift Station ] | 16d | 2026-09-26 A | 2026-09-27 A | JDH4-02-007-CN-5890 | 100% |  | 2027-02-10 | 2027-03-01 |  |  | Truck [160 h]; Labor [160 h]; Skilled Labor [160 h]; Driver [160 h]; Carpenter [160 h]; Steel Fixer [160 h]; Pedestrian Gate [0.66] | 6,258.83 | A9850 | STA | SL |
|  | 4 | **MV Cable Works** |  | 2026-05-13 | 2026-10-13 |  |  |  |  |  |  |  |  |  |  |  |  |
|  | 1 | **Medium Voltage Cable Road 8** |  | 2026-05-13 | 2026-08-09 |  |  |  |  |  |  |  |  |  |  |  |  |
| JDH4-02-007-CN-2480 |  | Installation of Duct banks [Road 08 ] | 21d | 2026-05-13 A | 2026-06-21 A | JDH4-02-007-CN-2420 | 100% |  | 2026-11-07 | 2026-11-30 |  |  | Truck [140 h]; Bobcat [140 h]; Compactor [140 h]; Labor [140 h]; Driver [140 h]; Eq. Operator [140 h]; Carpenter [140 h]; Steel Fixer [140 h]; Mason [140 h]; Electrician [140 h]; 6-way Duct Bank (6x150mm duct) [46.23] | 31,916.02 | A2810 | MV | EW |
| JDH4-02-007-CN-2420 |  | Excavation for Trench [Road 08 ] | 13d | 2026-06-06 A | 2026-06-30 A | JDH4-02-007-PR-1750, JDH4-02-007-MS-1130, JDH4-02-007-MS-1120 | 100% |  | 2026-10-06 | 2026-10-20 |  |  | Excavator [60 h]; Truck [180 h]; Labor [120 h]; Driver [120 h]; Eq. Operator [120 h]; Excavation for Trench size 40cm wide and 80cm deep (for 1 cable) [194.3] | 7,545 | A2700 | MV | EW |
| JDH4-02-007-CN-2540 |  | Installation of Medium Voltage Cables [Road 08 ] | 20d | 2026-07-05 A | 2026-08-09 A | JDH4-02-007-CN-2480 | 100% |  | 2026-12-01 | 2026-12-23 |  |  | Excavator [75 h]; Truck [150 h]; Bobcat [150 h]; Compactor [45 h]; Labor [300 h]; Driver [150 h]; Eq. Operator [450 h]; Electrician [150 h]; Cable: 15KV 3Cx500mm² AL/XLPE/LLDPE unarmored [571.51] | 126,476.25 | A2920 | MV | EW |
|  | 3 | **Medium Voltage Cable Road 7** |  | 2026-05-13 | 2026-08-02 |  |  |  |  |  |  |  |  |  |  |  |  |
| JDH4-02-007-CN-2500 |  | Installation of Duct banks [Road 07-N ] | 21d | 2026-05-13 A | 2026-05-26 A | JDH4-02-007-CN-2440 | 100% |  | 2026-11-04 | 2026-11-28 |  |  | Truck [60 h]; Bobcat [60 h]; Compactor [18 h]; Labor [60 h]; Driver [60 h]; Eq. Operator [60 h]; Carpenter [60 h]; Steel Fixer [60 h]; Mason [60 h]; Electrician [60 h]; 2-way Duct Bank (2x150mm duct) [20.1] | 13,876.53 | A2830 | MV | EW |
| JDH4-02-007-CN-2440 |  | Excavation for Trench [Road 07-N ] | 11d | 2026-06-18 A | 2026-07-27 A | JDH4-02-007-CN-2420 SS+5d | 100% |  | 2026-10-22 | 2026-11-03 |  |  | Excavator [55 h]; Truck [110 h]; Labor [110 h]; Driver [110 h]; Eq. Operator [110 h]; Excavation for Trench size 90cm wide and 80cm deep ( for 3 cables) [168.17] | 6,530.33 | A2720 | MV | EW |
| JDH4-02-007-CN-2560 |  | Installation of Medium Voltage Cables [Road 07-N ] | 17d | 2026-07-28 A | 2026-08-02 A | JDH4-02-007-CN-2500, JDH4-02-007-CN-2540 | 100% |  | 2026-11-22 | 2026-12-10 |  |  | Excavator [130 h]; Truck [130 h]; Bobcat [130 h]; Compactor [39 h]; Labor [260 h]; Driver [130 h]; Eq. Operator [390 h]; Electrician [130 h]; Cable Termination for 15KV 3Cx500mm² AL/XLPE/LLDPE [495.8] | 109,721.48 | A2940 | MV | EW |
|  | 2 | **Medium Voltage Cable Road 1** |  | 2026-07-25 | 2026-08-18 |  |  |  |  |  |  |  |  |  |  |  |  |
| JDH4-02-007-CN-2430 |  | Excavation for Trench [Road 01 ] | 21d | 2026-07-25 A | 2026-08-18 A | JDH4-02-007-CN-2440, JDH4-02-007-CN-2500 SS, JDH4-02-007-MS-1100 | 100% |  | 2027-03-18 | 2027-04-11 |  |  | Excavator [105 h]; Truck [210 h]; Labor [210 h]; Driver [210 h]; Eq. Operator [210 h]; Excavation for Trench size 60cm wide and 80cm deep ( for 2 cables) [344.38] | 13,372.86 | A2710 | MV | EW |
| JDH4-02-007-CN-2490 |  | Installation of Duct banks [Road 01 ] | 21d | 2026-07-25 A | 2026-08-18 A | JDH4-02-007-CN-2430 | 100% |  | 2027-04-12 | 2027-05-05 |  |  | Truck [120 h]; Bobcat [120 h]; Compactor [36 h]; Labor [120 h]; Driver [120 h]; Eq. Operator [120 h]; Carpenter [120 h]; Steel Fixer [120 h]; Mason [120 h]; Electrician [120 h]; 4-way Duct Bank (4x150mm duct) [39.53] | 27,290.51 | A2820 | MV | EW |
| JDH4-02-007-CN-2550 |  | Installation of Medium Voltage Cables [Road 01 ] | 14d | 2026-07-28 A | 2026-08-18 A | JDH4-02-007-CN-2490 | 100% |  | 2027-05-06 | 2027-05-26 |  |  | Excavator [260 h]; Truck [260 h]; Bobcat [260 h]; Compactor [78 h]; Labor [520 h]; Driver [260 h]; Eq. Operator [780 h]; Electrician [130 h]; Straight joints cables for 15KV 3x500mm² AL/XLPE/LLDPE unarmored [1013.71] | 224,335.95 | A2930 | MV | EW |

| ID | WBS | Activity | Duration | Start | Finish | Predecessors | Complete | Remaining | Planned start | Planned finish | Total float | Free float | Resources | Cost | Old Activity ID | JDH4-02-007 | Construction | USERTEXT | Weight 1 | Total Weight % | Mapping Sheet Activity ID |
| --- | --- | --- | --- | --- | --- | --- | --- | --- | --- | --- | --- | --- | --- | --- | --- | --- | --- | --- | --- | --- | --- |
|  | 4 | **Medium Voltage Cable Road 10** |  | 2026-08-10 | 2026-08-23 |  |  |  |  |  |  |  |  |  |  |  |  |  |  |  |  |
| JDH4-02-007-CN-2460 |  | Excavation for Trench [Road 10 ] | 16d | 2026-08-10 A | 2026-08-23 A | JDH4-02-007-CN-2430 SS+5d | 100% |  | 2027-02-20 | 2027-03-15 |  |  | Excavator [110.4 h]; Truck [110.4 h]; Labor [110 h]; Driver [110 h]; Eq. Operator [110 h]; Excavation for Trench size 60cm wide and 80cm deep ( for 2 cables) [175.54] | 6,816.52 | A2740 | MV | EW |  |  |  |  |
| JDH4-02-007-CN-2520 |  | Installation of Duct banks [Road 10 ] | 21d | 2026-08-10 A | 2026-08-23 A | JDH4-02-007-CN-2460, JDH4-02-007-CN-2500 | 100% |  | 2027-03-15 | 2027-04-08 |  |  | Truck [40 h]; Bobcat [40 h]; Compactor [12 h]; Labor [40 h]; Driver [40 h]; Eq. Operator [40 h]; Carpenter [40 h]; Steel Fixer [40 h]; Mason [40 h]; Electrician [40 h]; 4-way Duct Bank (4x150mm duct) [13.4] | 9,251.02 | A2850 | MV | EW |  |  |  |  |
| JDH4-02-007-CN-2580 |  | Installation of Medium Voltage Cables [Road 10 ] | 14d | 2026-08-10 A | 2026-08-23 A | JDH4-02-007-CN-2520, JDH4-02-007-CN-2560, JDH4-02-007-CN-2550, JDH4-02-007-CN-2300 SS | 100% |  | 2027-04-12 | 2027-04-28 |  |  | Excavator [130 h]; Truck [130 h]; Bobcat [130 h]; Compactor [39 h]; Labor [260 h]; Driver [130 h]; Eq. Operator [390 h]; Electrician [130 h]; Straight joints cables for 15KV 3x500mm² AL/XLPE/LLDPE unarmored [519.25] | 114,911.01 | A2960 | MV | EW |  |  |  |  |
|  | 5 | **Medium Voltage Cable Out of Zone** |  | 2026-06-20 | 2026-10-13 |  |  |  |  |  |  |  |  |  |  |  |  |  |  |  |  |
| JDH4-02-007-CN-2470 |  | Excavation for Trench [Out of Zone ] | 21d | 2026-06-20 A | 2026-10-03 A | JDH4-02-007-CN-2560 SS, JDH4-02-007-CN-2460 | 100% |  | 2027-04-05 | 2027-04-29 |  |  | Excavator [210 h]; Truck [210 h]; Labor [210 h]; Driver [210 h]; Eq. Operator [210 h]; Excavation for Trench size 90cm wide and 80cm deep ( for 3 cables) [237.85] | 9,236.12 | A2750 | MV | EW |  |  |  |  |
| JDH4-02-007-CN-2530 |  | Installation of Duct banks [Out of Zone ] | 16d | 2026-07-25 A | 2026-10-07 A | JDH4-02-007-CN-2470 | 100% |  | 2027-04-04 | 2027-04-22 |  |  | Truck [210 h]; Bobcat [210 h]; Compactor [63 h]; Labor [210 h]; Driver [210 h]; Eq. Operator [210 h]; Carpenter [210 h]; Steel Fixer [210 h]; Mason [210 h]; Electrician [210 h]; 2-way Duct Bank (2x150mm duct) [48.24] | 33,303.68 | A2860 | MV | EW |  |  |  |  |
| JDH4-02-007-CN-2590 |  | Installation of Medium Voltage Cables [Out of Zone ] | 13d | 2026-08-03 A | 2026-10-13 A | JDH4-02-007-CN-2530 | 100% |  | 2027-04-22 | 2027-05-08 |  |  | Excavator [189 h]; Truck [189 h]; Bobcat [189 h]; Compactor [56.7 h]; Labor [380 h]; Driver [190 h]; Eq. Operator [570 h]; Electrician [190 h]; Cable Termination for 15KV 3Cx500mm² AL/XLPE/LLDPE [694.79] | 153,758.35 | A2970 | MV | EW |  |  |  |  |
|  | 8 | **Plot Backfilling 2** |  | 2026-06-28 | 2026-11-02 |  |  |  |  |  |  |  |  |  |  |  |  |  |  |  |  |
| JDH4-02-007-CN-1860 |  | Plots backfilling Stage 5 [Plots ] | 11d | 2026-06-28 A | 2026-09-26 A | JDH4-02-007-CN-2420 SS | 100% |  | 2026-10-29 | 2026-11-10 |  |  | Loader [220 h]; Bulldozer [330 h]; Water Tanker [440 h]; Grider [440 h]; Truck [1760 h]; Road Roller [440 h]; Driver [1320 h]; Eq. Operator [110 h]; Plots backfilling [43071.4] | 1,013,707.62 | A1710 | RO | PL |  |  |  |  |
| JDH4-02-007-CN-1870 |  | Plots backfilling Stage 6 [Plots ] | 10d | 2026-07-25 A | 2026-10-27 | JDH4-02-007-CN-1860 | 90% | 5.5d | 2026-11-11 | 2026-11-22 | 150.5d | 0d | Loader [220 h]; Bulldozer [330 h]; Water Tanker [440 h]; Grider [440 h]; Truck [1760 h]; Road Roller [440 h]; Driver [1320 h]; Eq. Operator [110 h]; Plots backfilling [43071.4] | 1,013,707.62 | A1730 | RO | PL |  |  |  |  |
| JDH4-02-007-CN-1880 |  | Plots backfilling Stage 7 [Plots ] | 10d | 2026-07-30 A | 2026-11-02 | JDH4-02-007-CN-1870 | 75% | 5.5d | 2026-11-23 | 2026-12-03 | 150.5d | 0d | Loader [200 h]; Bulldozer [300 h]; Water Tanker [100 h]; Grider [400 h]; Truck [1200 h]; Road Roller [400 h]; Driver [1200 h]; Eq. Operator [100 h]; Plots backfilling [43071.4] | 1,013,707.62 | A1750 | RO | PL |  |  |  |  |
|  | 5 | **Additional Works** |  | 2026-04-15 | 2026-11-08 |  |  |  |  |  |  |  |  |  |  |  |  |  |  |  |  |
| JDH4-02-007-CN-1740 |  | Earth Work | 21d | 2026-04-15 A | 2026-10-03 A | JDH4-02-007-CN-1730, JDH4-02-007-CN-1880 SS | 100% |  | 2026-11-16 | 2026-12-09 |  |  | Excavator [80 h]; Loader [80 h]; Water Tanker [40 h]; Grider [160 h]; Truck [160 h]; Road Roller [160 h]; Labor [640 h]; Driver [320 h]; Eq. Operator [160 h]; Road excavation [728.29] | 1,143,719.3 | A1510 | RO | RD |  |  |  |  |
| JDH4-02-007-CN-5940 |  | Utilities Work | 25d | 2026-05-16 A | 2026-09-17 A | JDH4-02-007-CN-1740 | 100% |  | 2026-12-10 | 2027-01-07 |  |  | Excavator [80 h]; Loader [80 h]; Water Tanker [40 h]; Grider [160 h]; Truck [160 h]; Road Roller [160 h]; Labor [640 h]; Driver [320 h]; Eq. Operator [160 h]; Road excavation [728.29] | 1,143,719.3 | A1510 | RO | RD |  |  |  |  |
| JDH4-02-007-CN-5960 |  | Road Work | 25d | 2026-05-16 A | 2026-11-02 | JDH4-02-007-CN-5950 SS+1d | 90% | 5d | 2027-01-10 | 2027-02-07 | 150.5d | 4.5d | Excavator [80 h]; Loader [80 h]; Water Tanker [40 h]; Grider [160 h]; Truck [160 h]; Road Roller [160 h]; Labor [640 h]; Driver [320 h]; Eq. Operator [160 h]; Road excavation [728.29] | 1,143,719.3 | A1510 | RO | RD |  |  |  |  |
| JDH4-02-007-CN-5950 |  | Electrical Works | 25d | 2026-06-28 A | 2026-11-08 | JDH4-02-007-CN-5940 | 95% | 10d | 2027-01-16 | 2027-02-13 | 150.5d | 0d | Excavator [80 h]; Loader [80 h]; Water Tanker [40 h]; Grider [160 h]; Truck [160 h]; Road Roller [160 h]; Labor [640 h]; Driver [320 h]; Eq. Operator [160 h]; Road excavation [728.29] | 1,143,719.3 | A1510 | RO | EW |  |  |  |  |
|  | 8 | **Testing & Commissioning** |  | 2026-06-01 | 2027-01-02 |  |  |  |  |  |  |  |  |  |  |  |  |  |  |  |  |
| JDH4-02-007-TC-1020 |  | Test for Sanitary Sewerage | 3d | 2026-06-01 A | 2026-07-08 A | JDH4-02-007-CN-5180, JDH4-02-007-CN-5150, JDH4-02-007-CN-5120, JDH4-02-007-CN-5140, JDH4-02-007-CN-5130, JDH4-02-007-CN-5170 | 100% |  | 2026-10-12 | 2026-10-15 |  |  | Cost For Eng,Pro and T&C [1059]; QA/QC Engineer [1200 h] | 818,633.54 | CON-LEG101-TC-1040 |  | COM | MKH2-02-002-TC-1040 | 0.00628705390364481 | 0.628705390364481 | F1040 |
| JDH4-02-007-TC-1000 |  | Test for Potable Water Network | 3d | 2026-06-02 A | 2026-08-18 A | JDH4-02-007-CN-3670, JDH4-02-007-CN-3680, JDH4-02-007-CN-3660, JDH4-02-007-CN-3690, JDH4-02-007-CN-3720, JDH4-02-007-CN-4640, JDH4-02-007-CN-3720 FF, JDH4-02-007-CN-1010 | 100% |  | 2027-01-10 | 2027-01-12 |  |  | Cost For Eng,Pro and T&C [423.6]; QA/QC Engineer [1200 h] | 818,633.54 | CON-LEG101-TC-1020 |  | COM | MKH2-02-002-TC-1020 | 0.00427601156373912 | 0.427601156373912 | F1020 |
| JDH4-02-007-TC-1060 |  | Test for Road Works | 3d | 2026-06-09 A | 2026-11-07 | JDH4-02-007-CN-2370, JDH4-02-007-CN-2360, JDH4-02-007-CN-2350, JDH4-02-007-CN-2400, JDH4-02-007-CN-2390, JDH4-02-007-CN-1740 | 80% | 3d | 2026-12-09 | 2026-12-12 | 146d | 0d | Cost For Eng,Pro and T&C [30]; QA/QC Engineer [1200 h] | 818,633.54 | CON-LEG101-TC-1110 |  | COM |  | 0 | 0 | F1110 |
| JDH4-02-007-TC-1030 |  | Test for Stormwater Utilities | 3d | 2026-06-09 A | 2026-07-25 A | JDH4-02-007-CN-5530, JDH4-02-007-CN-5540, JDH4-02-007-CN-5550, JDH4-02-007-CN-5530R, JDH4-02-007-CN-4510, JDH4-02-007-CN-1030, JDH4-02-007-CN-3130 | 100% |  | 2026-11-19 | 2026-11-22 |  |  | Cost For Eng,Pro and T&C [564.8]; QA/QC Engineer [1200 h] | 818,633.54 | CON-LEG101-TC-1050 |  | COM | MKH2-02-002-TC-1050 | 0.0182365029001906 | 1.82365029001906 | F1050 |
| JDH4-02-007-TC-1010 |  | Test for TSE Network | 3d | 2026-06-10 A | 2026-08-12 A | JDH4-02-007-CN-4390, JDH4-02-007-CN-4350, JDH4-02-007-CN-4360, JDH4-02-007-CN-4340, JDH4-02-007-CN-4370, JDH4-02-007-CN-4400 | 100% |  | 2027-01-19 | 2027-01-21 |  |  | Cost For Eng,Pro and T&C [1059]; QA/QC Engineer [1200 h] | 818,633.54 | CON-LEG101-TC-1030 |  | COM | MKH2-02-002-TC-1030 | 0.00294807942651783 | 0.294807942651783 | F1030 |
| JDH4-02-007-TC-1050 |  | Test for Sewage Lift Station | 3d | 2026-06-17 A | 2027-01-02 | JDH4-02-007-CN-5900, JDH4-02-007-CN-1160, JDH4-02-007-CN-1210, JDH4-02-007-CN-1240, JDH4-02-007-CN-1280, JDH4-02-007-CN-1300, JDH4-02-007-CN-1070, JDH4-02-007-CN-1320, JDH4-02-007-CN-1370, JDH4-02-007-CN-1420, JDH4-02-007-CN-1520, JDH4-02-007-CN-1550, JDH4-02-007-CN-1600 | 20% | 3d | 2027-03-08 | 2027-03-14 | 102d | 0d | Cost For Eng,Pro and T&C [30]; QA/QC Engineer [1200 h] | 818,633.54 | CON-LEG101-TC-1080 |  | COM |  | 9.39817236874669E-005 | 0.00939817236874669 | F1080 |
| JDH4-02-007-TC-1040 |  | Test for Electrical Network | 3d | 2026-09-08 A | 2026-11-07 | JDH4-02-007-CN-2700, JDH4-02-007-CN-3240, JDH4-02-007-CN-3260, JDH4-02-007-CN-3270, JDH4-02-007-CN-3010, JDH4-02-007-CN-3250, JDH4-02-007-CN-2680, JDH4-02-007-CN-2680 FF, JDH4-02-007-TC-1030 | 30% | 3d | 2026-12-16 | 2026-12-19 | 140d | 0d | Cost For Eng,Pro and T&C [917.8]; QA/QC Engineer [1200 h] | 818,633.54 | CON-LEG101-TC-1055 |  | COM | MKH2-02-002-TC-1010 | 0.0147449549613949 | 1.47449549613949 | F1010 |

| ID | WBS | Activity | Duration | Start | Finish | Predecessors | Complete | Remaining | Planned start | Planned finish | Total float | Free float | Calendar | Resources | USERTEXT | Weight 1 | Total Weight % | Mapping Sheet Activity ID | Old Activity ID | Construction |
| --- | --- | --- | --- | --- | --- | --- | --- | --- | --- | --- | --- | --- | --- | --- | --- | --- | --- | --- | --- | --- |
|  | 7 | **Project Hand Over & Close-out** |  | 2026-07-14 | 2027-01-14 |  |  |  |  |  |  |  |  |  |  |  |  |  |  |  |
|  | 1 | **As-Built DWGs** |  | 2026-07-14 | 2027-01-14 |  |  |  |  |  |  |  |  |  |  |  |  |  |  |  |
|  | 1 | **As-Built DWGs Submittal** |  | 2026-07-14 | 2027-01-07 |  |  |  |  |  |  |  |  |  |  |  |  |  |  |  |
| JDH4-02-007-AB-1020 |  | As-Built DWGs Submittal for Sanitary Sewerage | 3d | 2026-07-14 A | 2026-08-12 A | JDH4-02-007-TC-1020 | 100% |  | 2026-10-25 | 2026-10-28 |  |  |  | Draftsman [30 h] | MKH2-02-002-ABS-1040 | 0 | 0 | G1110 | CON-LEG101-ABS-1040 | COM |
| JDH4-02-007-AB-1030 |  | As-Built DWGs Submittal for Stormwater Utilities | 5d | 2026-08-06 A | 2026-08-20 A | JDH4-02-007-TC-1030, JDH4-02-007-CN-5670 | 100% |  | 2026-12-12 | 2026-12-17 |  |  |  | Draftsman [30 h] | MKH2-02-002-ABS-1050 | 0 | 0 | G1120 | CON-LEG101-ABS-1050 | COM |
| JDH4-02-007-AB-1010 |  | As-Built DWGs Submittal for TSE Network | 5d | 2026-08-12 A | 2026-08-17 A | JDH4-02-007-TC-1010 | 100% |  | 2026-10-25 | 2026-10-31 |  |  |  | Draftsman [30 h] | MKH2-02-002-ABS-1030 | 0 | 0 | G1100 | CON-LEG101-ABS-1030 | COM |
| JDH4-02-007-AB-1000 |  | As-Built DWGs Submittal for Potable Water Network | 5d | 2026-08-13 A | 2026-08-19 A | JDH4-02-007-TC-1000 | 100% |  | 2026-12-12 | 2026-12-17 |  |  |  | Draftsman [30 h] | MKH2-02-002-ABS-1020 | 0 | 0 | G1090 | CON-LEG101-ABS-1020 | COM |
| JDH4-02-007-AB-1040 |  | As-Built DWGs Submittal for Electrical Network | 5d | 2026-10-14 A | 2026-11-12 | JDH4-02-007-TC-1040, JDH4-02-007-TC-1040 FF, JDH4-02-007-AB-1030 | 35% | 5d | 2026-11-08 | 2026-11-12 | 140d | 0d |  | Draftsman [30 h] | MKH2-02-002-ABS-1010 | 0 | 0 | G1080 | CON-LEG101-ABS-1055 | COM |
| JDH4-02-007-AB-1060 |  | As-Built DWGs Submittal for Road Works | 5d | 2026-10-14 A | 2026-11-12 | JDH4-02-007-TC-1060, JDH4-02-007-CN-3290, JDH4-02-007-CN-5960 | 35% | 5d | 2026-11-08 | 2026-11-12 | 146d | 0d |  | Draftsman [30 h] | MKH2-02-002-ABS-1060 | 0 | 0 | G1230 | CON-LEG101-ABS-1110 | COM |
| JDH4-02-007-AB-1050 |  | As-Built DWGs Submittal for Sewage Lift Station | 5d | 2027-01-03 | 2027-01-07 | JDH4-02-007-TC-1050 |  |  |  |  | 102d | 0d |  | Draftsman [30 h] | MKH2-02-002-ABS-1060 | 0 | 0 | G1220 | CON-LEG101-ABS-1100 | COM |
|  | 2 | **As-Built DWGs Approval** |  | 2026-08-13 | 2027-01-14 |  |  |  |  |  |  |  |  |  |  |  |  |  |  |  |
| JDH4-02-007-AB-1090 |  | As- Built DWGs Approval for Sanitary Sewerage | 4d | 2026-08-13 A | 2026-08-26 A | JDH4-02-007-AB-1020 | 100% |  | 2026-10-28 | 2026-11-02 |  |  | MODON-(6 Day X 8hrs) | Consultant Staff [40 h] | MKH2-02-002-ABA-1040 | 0 | 0 | G1040 | CON-LEG101-ABA-1040 | COM |
| JDH4-02-007-AB-1080 |  | As- Built DWGs Approval for TSE Network | 6d | 2026-08-18 A | 2026-08-29 A | JDH4-02-007-AB-1010 | 100% |  | 2026-10-31 | 2026-11-07 |  |  | MODON-(6 Day X 8hrs) | Consultant Staff [40 h] | MKH2-02-002-ABA-1030 | 0 | 0 | G1030 | CON-LEG101-ABA-1030 | COM |
| JDH4-02-007-AB-1070 |  | As- Built DWGs Approval for Potable Water Network | 3d | 2026-08-20 A | 2026-09-05 A | JDH4-02-007-AB-1000 | 100% |  | 2026-12-17 | 2026-12-21 |  |  | MODON-(6 Day X 8hrs) | Consultant Staff [40 h] | MKH2-02-002-ABA-1020 | 0 | 0 | G1020 | CON-LEG101-ABA-1020 | COM |
| JDH4-02-007-AB-1100 |  | As- Built DWGs Approval for Stormwater Utilities | 6d | 2026-08-20 A | 2026-09-06 A | JDH4-02-007-AB-1030 | 100% |  | 2026-12-17 | 2026-12-24 |  |  | MODON-(6 Day X 8hrs) | Consultant Staff [40 h] | MKH2-02-002-ABA-1050 | 0 | 0 | G1050 | CON-LEG101-ABA-1050 | COM |
| JDH4-02-007-AB-1110 |  | As- Built DWGs Approval for Electrical Network | 6d | 2026-11-14 | 2026-11-19 | JDH4-02-007-AB-1040, JDH4-02-007-AB-1100 |  |  |  |  | 140d | 0d | MODON-(6 Day X 8hrs) | Consultant Staff [40 h] | MKH2-02-002-ABA-1010 | 0 | 0 | G1010 | CON-LEG101-ABA-1055 | COM |
| JDH4-02-007-AB-1130 |  | As- Built DWGs Approval for Road Works | 6d | 2026-11-14 | 2026-11-19 | JDH4-02-007-AB-1060 |  |  |  |  | 146d | 6d | MODON-(6 Day X 8hrs) | Consultant Staff [40 h] | MKH2-02-002-ABA-1060 | 0 | 0 | G1290 | CON-LEG101-ABA-1110 | COM |
| JDH4-02-007-AB-1120 |  | As- Built DWGs Approval for Sewage Lift Station | 6d | 2027-01-09 | 2027-01-14 | JDH4-02-007-AB-1050, JDH4-02-007-AB-1050 FF |  |  |  |  | 102d | 0d | MODON-(6 Day X 8hrs) | Consultant Staff [40 h] | MKH2-02-002-ABA-1060 | 0 | 0 | G1280 | CON-LEG101-ABA-1100 | COM |
|  | 2 | **Demobilization** |  | 2026-11-21 | 2026-12-30 |  |  |  |  |  |  |  |  |  |  |  |  |  |  |  |
| JDH4-02-007-DM-1000 |  | Demobilization of Manpower | 5d | 2026-11-21 | 2026-11-25 | JDH4-02-007-AB-1110, JDH4-02-007-AB-1070, JDH4-02-007-AB-1080, JDH4-02-007-AB-1090, JDH4-02-007-AB-1100, JDH4-02-007-CN-5880, JDH4-02-007-CN-2590, JDH4-02-007-CN-2580 |  |  |  |  | 140d | 25d |  | Labor [105.9 h]; Skilled Labor [60 h] | MKH2-02-002-DM-1000 | 0 | 0 | G1140 | CON-LEG101-DM-1000 | COM |
| JDH4-02-007-DM-1010 |  | Removal of Equipment from Site | 5d | 2026-11-21 | 2026-11-25 | JDH4-02-007-AB-1110, JDH4-02-007-AB-1070, JDH4-02-007-AB-1080, JDH4-02-007-AB-1090, JDH4-02-007-AB-1100, JDH4-02-007-AB-1130 SS, JDH4-02-007-CN-2590 |  |  |  |  | 140d | 25d |  | Labor [60 h]; Skilled Labor [105.9 h] | MKH2-02-002-DM-1010 | 0 | 0 | G1150 | CON-LEG101-DM-1010 | COM |
| JDH4-02-007-DM-1020 |  | Site Clean Up | 5d | 2026-11-21 | 2026-11-25 | JDH4-02-007-AB-1110, JDH4-02-007-AB-1070, JDH4-02-007-AB-1080, JDH4-02-007-AB-1090, JDH4-02-007-AB-1100, JDH4-02-007-AB-1130 SS, JDH4-02-007-CN-2590 |  |  |  |  | 140d | 25d |  | Labor [105.9 h]; Skilled Labor [60 h] | MKH2-02-002-DM-1020 | 0 | 0 | G1160 | CON-LEG101-DM-1020 | COM |
| JDH4-02-007-DM-1030 |  | Removal of Site Offices and Structures | 5d | 2026-11-21 | 2026-11-25 | JDH4-02-007-AB-1110, JDH4-02-007-AB-1070, JDH4-02-007-AB-1080, JDH4-02-007-AB-1090, JDH4-02-007-AB-1100, JDH4-02-007-AB-1130 SS, JDH4-02-007-CN-2530, JDH4-02-007-CN-2590 |  |  |  |  | 140d | 25d |  | Labor [60 h]; Skilled Labor [105.9 h] | MKH2-02-002-DM-1030 | 0 | 0 | G1170 | CON-LEG101-DM-1030 | COM |
| JDH4-02-007-DM-1040 |  | Restoration of Ground Surfaces | 5d | 2026-12-26 | 2026-12-30 | JDH4-02-007-DM-1030, JDH4-02-007-DM-1020, JDH4-02-007-DM-1010, JDH4-02-007-DM-1000, JDH4-02-007-CN-2590, JDH4-02-007-CN-2530, JDH4-02-007-CN-2470, JDH4-02-007-CN-2580, JDH4-02-007-CN-2520, JDH4-02-007-CN-2460, JDH4-02-007-CN-2550, JDH4-02-007-CN-2490, JDH4-02-007-CN-2430, JDH4-02-007-CN-2560, JDH4-02-007-CN-2500, JDH4-02-007-CN-2440, JDH4-02-007-CN-2540, JDH4-02-007-CN-2480, JDH4-02-007-CN-2420, JDH4-02-007-CN-5900, JDH4-02-007-CN-5890, JDH4-02-007-CN-1580, JDH4-02-007-CN-1570, JDH4-02-007-CN-1550, JDH4-02-007-CN-1540, JDH4-02-007-CN-1530, JDH4-02-007-CN-1520, JDH4-02-007-CN-1510, JDH4-02-007-CN-1510 FF, JDH4-02-007-CN-1500, JDH4-02-007-CN-1490 |  |  |  |  | 115d | 0d |  | Labor [105.9 h]; Skilled Labor [50 h] | MKH2-02-002-DM-1040 | 0 | 0 | G1180 | CON-LEG101-DM-1040 | COM |

## Activity codes

| Code | Value | Meaning |
| --- | --- | --- |
| Construction | BC | Box Culvert |
| Construction | COM | Testing and Commissioning |
| Construction | DW | Demolition Works |
| Construction | ENG | Engineering |
| Construction | EW | Electrical Works |
| Construction | MOB | Mobilization |
| Construction | OP | Open Drain Channel |
| Construction | PL | Plots |
| Construction | PRO | Procuments |
| Construction | PW | Potable Water Network |
| Construction | RD | Road Works |
| Construction | SD | Storm Water Network |
| Construction | SL | Sewage Lift Station |
| Construction | SW | Sewer Water Network |
| Construction | TSE | TSE Network |
| Construction | UP | Under Pass |
| JDH4-02-007 | ICT | ICT (Data& telephone System) |
| JDH4-02-007 | MV | ELECTRICAL WORKS |
| JDH4-02-007 | POT | POTABLE WATER |
| JDH4-02-007 | RO | ROAD WORKS |
| JDH4-02-007 | SEW | SEWERAGE NETWORK |
| JDH4-02-007 | STA | SEWAGE LIFT STATION |
| JDH4-02-007 | STL | ROAD LIGHTING |
| JDH4-02-007 | STO | STORM WATER DRAINAGE |
| JDH4-02-007 | TEL | TELECOMMUNICATIONS |
| JDH4-02-007 | TSE | TSE NETWORK |
| Procurement | PR-EE | Electrical Materials |
| Procurement | PR-PW | Potable Works Material |
| Procurement | PR-RD | Road Works Material |
| Procurement | PR-SD | Storm Works Material |
| Procurement | PR-SL | Lift Station Material |
| Procurement | PR-SW | Sewer Works Material |
| Procurement | PR-TSE | TSE Network Materials |
| Responsibilities | EN | Engineering Department |
| Shop Drawings | SD-EE | Shop DWGs Electrical |
| Shop Drawings | SD-PW | Shop DWGs Potable |
| Shop Drawings | SD-RD | Shop DWGs Roads |
| Shop Drawings | SD-SL | Shop DWGs Sewage Lift Station |
| Shop Drawings | SD-ST | Shop DWGs Storm |
| Shop Drawings | SD-SW | Shop DWGs Sewer |
| Shop Drawings | SD-TSE | Shop DWGs TSE |
