# Development of the Technology City in Dammam-Project UPDATE 06-10-2026

Schedule from Primavera P6, 2025-12-23 to 2027-06-20, data date 2026-10-06, costs in SR, A marks actual dates.
Must finish by 2027-02-23

## Calendars

- MODON - ACTIVITY: Mon-Thu 08:00-12:00, 13:00-17:00; Fri off; Sat-Sun 08:00-12:00, 13:00-17:00. Exceptions (off unless hours are given): 2026-02-18 to 2026-02-19 6:00-12:00, 2026-02-21 6:00-12:00, 2026-02-22, 2026-02-23 to 2026-02-26 6:00-12:00, 2026-02-28 to 2026-03-05 6:00-12:00, 2026-03-07 to 2026-03-12 6:00-12:00, 2026-03-14 to 2026-03-19 6:00-12:00, 2026-03-21 to 2026-03-23, 2026-05-26 to 2026-05-28, 2026-05-30, 2026-06-15 to 2026-06-18 6:00-12:00, 15:00-17:00, 2026-06-20 to 2026-06-25 6:00-12:00, 15:00-17:00, 2026-06-27 to 2026-07-02 6:00-12:00, 15:00-17:00, 2026-07-04 to 2026-07-09 6:00-12:00, 15:00-17:00, 2026-07-11 to 2026-07-16 6:00-12:00, 15:00-17:00, 2026-07-18 to 2026-07-23 6:00-12:00, 15:00-17:00, 2026-07-25 to 2026-07-30 6:00-12:00, 15:00-17:00, 2026-08-01 to 2026-08-06 6:00-12:00, 15:00-17:00, 2026-08-08 to 2026-08-13 6:00-12:00, 15:00-17:00, 2026-08-15 to 2026-08-20 6:00-12:00, 15:00-17:00, 2026-08-22 to 2026-08-27 6:00-12:00, 15:00-17:00, 2026-08-29 to 2026-09-03 6:00-12:00, 15:00-17:00, 2026-09-05 to 2026-09-10 6:00-12:00, 15:00-17:00, 2026-09-12 to 2026-09-15 6:00-12:00, 15:00-17:00, 2026-09-23, 2027-02-08 to 2027-02-11 6:00-12:00, 2027-02-13 to 2027-02-18 6:00-12:00, 2027-02-20 to 2027-02-21 6:00-12:00, 2027-02-22 8:00-16:00, 2027-02-23 to 2027-02-25 6:00-12:00, 2027-02-27 to 2027-03-04 6:00-12:00, 2027-03-06 to 2027-03-08 6:00-12:00, 2027-03-09 to 2027-03-11, 2027-05-15 to 2027-05-19, 2027-06-15 to 2027-06-17 6:00-12:00, 15:00-17:00, 2027-06-19 to 2027-06-20 6:00-12:00, 15:00-17:00.
- PROCUREMENT MODON3: Mon 08:00-12:00, 13:00-17:00; Tue 08:00-16:00; Wed-Sun 08:00-12:00, 13:00-17:00. Exceptions (off unless hours are given): 2026-03-14 08:00-16:00, 2027-01-12 08:00-12:00, 13:00-17:00, 2027-01-19 08:00-12:00, 13:00-17:00, 2027-01-26 08:00-12:00, 13:00-17:00, 2027-03-08 to 2027-03-11, 2027-05-15 to 2027-05-19.

## Resources

| Resource | Group | Unit | Rate | Notes |
| --- | --- | --- | --- | --- |
| MH depth 1.5 - 2.5m | material |  | 355.05 |  |
| MH depth 2.5 - 3.5m | material |  | 508.2 |  |
| MH depth > 3.50m | material |  |  |  |
| MH depth 2.5 -3.5m | material |  | 656.1 |  |
| MH depth > 3.50m | material |  | 771.36 |  |
| Depth Between 1.50m to 2.50m | material |  | 13.83 |  |
| Depth Between 2.50m to 3.50m | material |  | 17.94 |  |
| Depth > 3.50m | material |  | 18.78 |  |
| Depth Between 2.50m to 3.50m | material |  | 20.7 |  |
| Depth > 3.50m | material |  | 21.75 |  |
| Depth Between 0m to 1.50m | material |  | 18.99 |  |
| Depth Between 1.50m to 2.50m | material |  | 20.1 |  |
| Depth Between 2.50m to 3.50m | material |  | 23.4 |  |
| Depth > 3.50m | material |  | 24.27 |  |
| Depth Between 2.50m to 3.50m | material |  | 26.79 |  |
| Depth > 3.50m | material |  | 27.78 |  |
| Depth Between 3.50m to 4.50m | material |  | 31.14 |  |
| Depth > 4.50m | material |  | 32.22 |  |
| Depth Between 3.50m to 4.50m | material |  | 34.32 |  |
| Depth > 4.50m | material |  | 36.24 |  |
| Depth Between 0m to 1.50m | material |  | 13.02 |  |
| Depth Between 1.50m to 2.50m | material |  | 14.85 |  |
| Depth > 2.50m | material |  | 16.68 |  |
| Depth Between 0m to 1.50m | material |  | 7.29 |  |
| Depth Between 1.50m to 2.50m | material |  | 7.8 |  |
| Depth > 2.50m | material |  | 11.94 |  |
| Depth Between 0m to 1.50m | material |  | 8.34 |  |
| Depth Between 1.50m to 2.50m | material |  | 8.94 |  |
| Depth Between 2.50m to 3.50m | material |  | 13.05 |  |
| Depth > 3.50m | material |  | 13.83 |  |
| HDPE Force Main (PE 100, SDR 11, PN 16 bar) DN 160 mm diameter, in trenches depth: 0- 1.5m | material |  | 9.12 |  |
| HDPE Force Main (PE 100, SDR 11, PN 16 bar) DN 160 mm diameter, in trenches depth: 1.51- 2.5m | material |  | 10.02 |  |
| Depth: 0 - 1.5m | material |  | 309.03 |  |
| Depth: 1.51 - 2.5m | material |  | 35.52 |  |
| Depth: 2.51 - 3.5m | material |  | 508.2 |  |
| Depth > 3.50m | material |  | 601.62 |  |
| Depth Between 0m to 1.50m | material |  | 2.16 |  |
| Depth Between 1.50m to 2.50m | material |  | 2.79 |  |
| Depth > 2.50m | material |  | 3.39 |  |
| Depth Between 0m to 1.50m | material |  | 3.21 |  |
| Depth Between 1.50m to 2.50m | material |  | 3.78 |  |
| Depth > 2.50m | material |  | 4.41 |  |
| Depth Between 0m to 1.50m | material |  | 4.41 |  |
| Depth Between 1.50m to 2.50m | material |  | 5.01 |  |
| Depth > 2.50m | material |  | 5.58 |  |
| Depth Between 0m to 1.50m | material |  | 8.25 |  |
| Depth Between 1.50m to 2.50m | material |  | 9 |  |
| Depth > 2.50m | material |  | 9.63 |  |
| pipe line O.D 32 mm PN 10, in depth 0 to 1.5 m | material |  | 0.9 |  |
| pipe line O.D 40 mm PN 10, in depth 0 to 1.5 m | material |  | 1.26 |  |
| pipe line O.D 50 mm PN 10, in depth 0 to 1.5 m | material |  | 1.8 |  |
| Gate valves Dia 50 mm | material |  | 54 |  |
| Gate valves Dia 100 mm | material |  | 64.8 |  |
| Gate valves Dia 150 mm | material |  | 86.4 |  |
| Gate valves Dia 250 mm | material |  | 151.2 |  |
| Air valves with Dia 50 mm | material |  | 288 |  |
| Washout valve Dia 100 mm | material |  | 288 |  |
| 3-outlet fire hydrant (2 x 2.5 inch and 1 x 4.5 inch) in the form of a separate dry vacuum cylinder, complete according to drawings. | material |  | 342 |  |
| Wash out chamber (2500x 2500mm) | material |  | 720 |  |
| Air valve chamber (1000x 1000 mm) | material |  | 360 |  |
| Flow meter chamber (1500x 2500 mm) | material |  | 720 |  |
| Flow meter dia 100 mm | material |  | 918 |  |
| Gate valve 50 mm PN16 | material |  | 43.2 |  |
| Direct Burried Gate valve 40 mm PN16 | material |  | 43.2 |  |
| Pressure–compensating bubblers 110 Lit/Hr | material |  | 0.51 |  |
| Flushing Bronze gate valve dia 1.5" inside PVC box | material |  | 54 |  |
| Air release valve 1.5" inside PVC box | material |  | 54 |  |
| Extra flexible pressure compensating on surface inline dripline`s, O.D. is 16.1 mm | material |  | 0.45 |  |
| Electrical Solenoid Valve ( 1.5") inside PVC box | material |  | 43.2 |  |
| Electrical Solenoid Valve ( 2") inside PVC box | material |  | 54 |  |
| Quick coupling valve 1" inside a round valve box 10" size with a manual gate valve, hose swivel and key with all accessories | material |  | 90 |  |
| Advanced Irrigation controller subject to client approval, can connect with Centarl Control system | material |  | 900 |  |
| Decoder cables 12 AWG between valves and controllers, The cables shall be pulled through 32Ø UPVC conduit | material |  | 0.36 |  |
| Preparing the irrigation program for the entire system and providing technical services for monitoring and controlling the central irrigation systems | material |  | 1080 |  |
| Excavation for Trench size 40cm wide and 80cm deep (for 1 cable) | material |  | 1.23 |  |
| Excavation for Trench Size 60cm wide and 80cm deep (for 2 cables) | material |  | 1.23 |  |
| Excavation for Trench Size 90cm wide and 80cm deep (for 3 cables) | material |  | 1.23 |  |
| Excavation for Trench Size 180cm wide and 80cm deep (for 6 cables) | material |  | 1.23 |  |
| Excavation for Trench Size 210 cm wide and 80cm deep (for 7 cables) | material |  | 1.23 |  |
| Excavation for Trench Size 240cm wide and 80cm deep (for 8 cables) | material |  | 1.23 |  |
| Duct bank for (33) cables | material |  | 64.89 |  |
| Duct bank for (21) cables | material |  | 43.14 |  |
| Duct bank for (15) cables | material |  | 32.31 |  |
| HV Cable Road Crossing | material |  | 18.69 |  |
| Road crossing ducts, 2 ways (2 x 150mm HDPE) | material |  | 7.38 |  |
| Road crossing ducts, 2 ways (2 x 110mm UPVC) | material |  | 4.62 |  |
| Road crossing ducts, 3 ways (3 x 110mm UPVC) | material |  | 6.6 |  |
| 4C-300mm2 CU/XLPE / PVC ARMORED CABLE | material |  | 27.42 |  |
| 4C-240mm2 CU/XLPE / PVC ARMORED CABLE | material |  | 22.38 |  |
| 4C-185mm2 CU/XLPE / PVC ARMORED CABLE | material |  | 17.28 |  |
| 4C-50mm2 CU/XLPE / PVC ARMORED CABLE | material |  | 5.04 |  |
| 4C-16mm2 CU/XLPE / PVC ARMORED CABLE | material |  | 1.77 |  |
| 4C-16MM2 CU/XLPE / PVC CABLE | material |  | 1.62 |  |
| 1Cx150sq.mm2,Cu, PVC wire | material |  | 3.15 |  |
| 1Cx120sq.mm2,Cu, PVC wire | material |  | 2.61 |  |
| 1Cx95sq.mm,Cu, PVC wire | material |  | 2.1 |  |
| 1Cx70sq.mm2,Cu, PVC wire | material |  | 1.56 |  |
| 1Cx25sq.mm2,Cu, PVC wire | material |  | 0.63 |  |
| 1Cx16sq.mm2,Cu, PVC wire | material |  | 0.3 |  |
| 1Cx10sq.mm2,Cu, PVC wire | material |  | 0.24 |  |
| Supply and installation of KWH meter mounting frame including concrete block for installation of KWH meter | material |  | 54.54 |  |
| Lighting poles with 1 arm, height of (12) meters, including the power distribution box, cables, and RCC foundation. | material |  | 109.38 |  |
| Lighting poles with 2 arms, height of (12) meters, including the power distribution box, cables, and RCC foundation. | material |  | 131.13 |  |
| Street Lighting( LED) Luminaire of Output ? 20,965 lumen complete with control gear and lamp, (129.1) WATT. | material |  | 17.82 |  |
| Including earthing of lighting poles, masts, feeder pillars, unit substations and LV feeders. | material |  | 5.22 |  |
| Street Lighting panels LCP (01) | material |  | 718.83 |  |
| 2-ways ducts, 50mm diameter | material |  | 1.59 |  |
| 6-ways ducts, 110mm diameter | material |  | 2.28 |  |
| 9-ways ducts, 6 x 160mm & 2 x 100mm | material |  | 8.97 |  |
| 6 PVC ducts 150x200 mm (60mm diameter) | material |  | 1.44 |  |
| 6 PVC ducts 600x800 mm (120mm diameter) | material |  | 7.44 |  |
| 6 PVC ducts 800x800 mm (170mm diameter) | material |  | 7.56 |  |
| Manhole Type 2 (1600 x 1600 x 2000) | material |  | 147.51 |  |
| Manhole Type 3 (1200 x 1200 x 2000) | material |  | 139.23 |  |
| 6 PVC ducts 200x150 mm (60mm diameter) | material |  | 3.36 |  |
| 2-ways ducts, 50mm diameter | material |  | 1.77 |  |
| NVR Server with RAID (5, 6 or 10) to record all cameras storage 80TB with all hardware / software / licenses etc. | material |  | 2944.62 |  |
| VMS Server with RAID (5, 6 or 10) complete Hardware / Software with one Color Laser Printer and all associated | material |  | 1682.64 |  |
| Licenses for Cameras, Workstations and Keyboards | material |  | 16806.3 |  |
| Work Station (MMI with two monitors each, for Monitoring for CCTV & ACS) | material |  | 671.31 |  |
| Keyboard with joystick for CCTV with all accessories as per specification | material |  | 181.77 |  |
| Pole mounted IP( PoE) Fixed camera, 5MP,IP 66, IR illumination, 3-8mm varifocal, auto iris lens type | material |  | 123.21 |  |
| Wall mounted IP( PoE) Fixed camera, 5MP,IP 66, IR illumination, 3-8mm varifocal, auto iris lens type | material |  | 123.21 |  |
| 5MP Dome camera ceiling Mounted IP (PoE) indoor | material |  | 125.37 |  |
| 5MP PTZ Multi Sensor Camera IP(PoE) 360 Degree View Outdoor with accessories (IP 66) | material |  | 544.83 |  |
| 8 Port Industrial PoE Switch 10/100BaseT (0 deg to +70 deg. Celsius) | material |  | 326.7 |  |
| Filed Equipment cabinet (FEC), with fan and ventilation, NEMEX 4X ,door, minimum size (600x600x400mm) | material |  | 193.86 |  |
| IP Phone Communication server (hot standby) 50 Port equipped, Gateway, Gatekeeper, H.323, SIP, redundant Power etc. | material |  | 1682.64 |  |
| IP Phone Voice gateway | material |  |  |  |
| Voice IP Phone | material |  | 54 |  |
| NMS Server for IP phone and NETWORK Elements | material |  | 1260 |  |
| NMS Workstation | material |  | 559.8 |  |
| Firm Ware, software & licenses | material |  | 900 |  |
| Data Cable | material |  | 126 |  |
| Power Cable | material |  | 54 |  |
| Layer 3, 24 Port non-PoE switch10/1000BaseT/LX (-40 deg to +70 deg. Celsius), stack module and associated | material |  | 1264.08 |  |
| Layer 2, 24 Port non-PoE switch10/1000BaseT (-40 deg to +70 deg. Celsiu | material |  | 1264.08 |  |
| Network Management System Server | material |  | 3356.34 |  |
| Network Management System workstation | material |  | 671.31 |  |
| 42U rack dimension (W x H x L) 800 x 2000 x 1000 mm | material |  | 195.81 |  |
| 12U rack dimension (W x H x L) 600 x 625 x 600 mm | material |  | 83.94 |  |
| 06C Optical Fiber SM | material |  | 0.18 |  |
| 48C Optical Fiber SM | material |  | 0.87 |  |
| 48 Core Splice Closure | material |  | 39.18 |  |
| Optical fiber patch cord 5m | material |  | 4.5 |  |
| Data Cable (STP CAT 6A) | material |  | 0.15 |  |
| 3C Power Cable armored 1.5mm2 | material |  | 0.3 |  |
| 3C Power Cable armored 2.5 mm2 | material |  | 0.36 |  |
| UTP CAT6A Patch Cord 1m/3m/5m | material |  | 1.71 |  |
| Access Control Unit | material |  | 139.86 |  |
| Access Card Reader | material |  | 2.82 |  |
| Magnetic Lock | material |  | 67.14 |  |
| Break Glass | material |  | 11.22 |  |
| Exit Push button | material |  | 5.64 |  |
| Door Sensor | material |  | 5.64 |  |
| Biometrics Reader | material |  | 19.59 |  |
| Smart Card Printer | material |  | 279.72 |  |
| Card Issue Work Station | material |  | 447.54 |  |
| Photographic Camera with stand | material |  | 335.67 |  |
| Interface modules with CCTV, Fire and other systems | material |  | 1420.89 |  |
| Subgrade | material |  | 1.47 |  |
| Aggregate base course | material |  | 3.03 |  |
| Bituminous base course (Grading I - Class A), including Prime Coat (MC1) | material |  | 18.36 |  |
| Bituminous concrete wearing course, (Grading I - Class A), including tack coat (RC2) | material |  | 18.54 |  |
| 60mm thick | material |  | 1.98 |  |
| 80mm thick | material |  | 2.64 |  |
| Precast Concrete Curbstone 150X300X900 Type (K1-A) | material |  | 1.44 |  |
| Precast Concrete Curbstone 100X200X500 Type (K4) | material |  | 1.44 |  |
| Precast Concrete Curbstone 150X300X500 Type (K1-B) | material |  | 1.44 |  |
| Precast Concrete Curbstone Type (K1-C) | material |  | 1.44 |  |
| Flush Kerb Type (D) | material |  | 1.44 |  |
| Traffic signs, ground mounted, Sheet Aluminum, (breakaway) Single post IPE, with all accessories | material |  | 28.8 |  |
| Precast Concrete Blister Warning Tactile Paver Brown Finish 300*300*60mm | material |  | 5.4 |  |
| Retroreflective Thermoplastic White Traffic lines | material |  | 1.26 |  |
| Retroreflective Thermoplastic Yellow, Traffic lines | material |  | 1.26 |  |
| Unskilled Labor | labor |  |  |  |
| Excavator | equipment |  |  |  |
| Mobile Crane | equipment |  |  |  |
| Grader | equipment |  |  | ï»? |
| Skilled Labor | labor |  |  |  |
| Loader | equipment |  |  |  |
| Depth Between 0m to 1.50m | material |  | 43.4 |  |
| Depth Between 1.50m to 2.50m | material |  | 49.5 |  |
| Depth > 2.50m | material |  | 55.6 |  |
| Depth Between 1.50m to 2.50m | material |  | 46.1 |  |
| Depth Between 2.50m to 3.50m | material |  | 59.8 |  |
| Depth > 3.50m | material |  | 62.6 |  |
| Depth Between 2.50m to 3.50m | material |  | 69 |  |
| Depth > 3.50m | material |  | 72.5 |  |
| Depth Between 0m to 1.50m | material |  | 63.3 |  |
| Depth Between 1.50m to 2.50m | material |  | 67 |  |
| Depth Between 2.50m to 3.50m | material |  | 78 |  |
| Depth > 3.50m | material |  | 80.9 |  |
| Depth Between 2.50m to 3.50m | material |  | 89.3 |  |
| Depth > 3.50m | material |  | 92.6 |  |
| Depth Between 3.50m to 4.50m | material |  | 103.8 |  |
| Depth > 4.50m | material |  | 107.4 |  |
| Depth Between 3.50m to 4.50m | material |  | 114.4 |  |
| Depth > 4.50m | material |  | 120.8 |  |
| MH depth 1.5 - 2.5m | material |  | 1183.5 |  |
| MH depth 2.5 - 3.5m | material |  | 1694 |  |
| MH depth > 3.50m | material |  |  |  |
| MH depth 2.5 -3.5m | material |  | 2187 |  |
| MH depth > 3.50m | material |  | 2571.2 |  |
| Single Catch Basin 1000mm x 1000mm | material |  | 780 |  |
| Double Catch Basin 1200mm x 2300mm | material |  | 1020 |  |
| Depth Between 0m to 1.50m | material |  | 24.3 |  |
| Depth Between 1.50m to 2.50m | material |  | 26 |  |
| Depth > 2.50m | material |  | 39.8 |  |
| Depth Between 0m to 1.50m | material |  | 27.8 |  |
| Depth Between 1.50m to 2.50m | material |  | 29.8 |  |
| Depth Between 2.50m to 3.50m | material |  | 43.5 |  |
| Depth > 3.50m | material |  | 46.1 |  |
| HDPE Force Main (PE 100, SDR 11, PN 16 bar) DN 160 mm diameter, in trenches depth: 0- 1.5m | material |  | 30.4 |  |
| HDPE Force Main (PE 100, SDR 11, PN 16 bar) DN 160 mm diameter, in trenches depth: 1.51- 2.5m | material |  | 33.4 |  |
| Depth: 0 - 1.5m | material |  | 1030.1 |  |
| Depth: 1.51 - 2.5m | material |  | 118.4 |  |
| Depth: 2.51 - 3.5m | material |  | 1694 |  |
| Depth > 3.50m | material |  | 2005.4 |  |
| Depth Between 0m to 1.50m | material |  | 7.2 |  |
| Depth Between 1.50m to 2.50m | material |  | 9.3 |  |
| Depth > 2.50m | material |  | 11.3 |  |
| Depth Between 0m to 1.50m | material |  | 10.7 |  |
| Depth Between 1.50m to 2.50m | material |  | 12.6 |  |
| Depth > 2.50m | material |  | 14.7 |  |
| Depth Between 0m to 1.50m | material |  | 14.7 |  |
| Depth Between 1.50m to 2.50m | material |  | 16.7 |  |
| Depth > 2.50m | material |  | 18.6 |  |
| Depth Between 0m to 1.50m | material |  | 27.5 |  |
| Depth Between 1.50m to 2.50m | material |  | 30 |  |
| Depth > 2.50m | material |  | 32.1 |  |
| Gate valves Dia 50 mm | material |  | 180 |  |
| Gate valves Dia 100 mm | material |  | 216 |  |
| Gate valves Dia 150 mm | material |  | 288 |  |
| Gate valves Dia 250 mm | material |  | 504 |  |
| Air valves with Dia 50 mm | material |  | 960 |  |
| Washout valve Dia 100 mm | material |  | 960 |  |
| 3-outlet fire hydrant (2 x 2.5 inch and 1 x 4.5 inch) in the form of a separate dry vacuum cylinder, complete according to drawings. | material |  | 1140 |  |
| Wash out chamber (2500x 2500mm) | material |  | 2400 |  |
| Air valve chamber (1000x 1000 mm) | material |  | 1200 |  |
| Flow meter chamber (1500x 2500 mm) | material |  | 2400 |  |
| Flow meter dia 100 mm | material |  | 3060 |  |
| Glass Fused Bolted (GLS) 1500 m3 Tank with associated accessories & manufacturer recommendation for the foundation | material |  | 61509.4 |  |
| Excavation for Trench size 40cm wide and 80cm deep (for 1 cable) | material |  | 4.1 |  |
| Excavation for Trench Size 60cm wide and 80cm deep (for 2 cables) | material |  | 4.1 |  |
| Excavation for Trench Size 90cm wide and 80cm deep (for 3 cables) | material |  | 4.1 |  |
| Excavation for Trench Size 180cm wide and 80cm deep (for 6 cables) | material |  | 4.1 |  |
| Excavation for Trench Size 210 cm wide and 80cm deep (for 7 cables) | material |  | 4.1 |  |
| Excavation for Trench Size 240cm wide and 80cm deep (for 8 cables) | material |  | 4.1 |  |
| Duct bank for (33) cables | material |  | 216.3 |  |
| Duct bank for (21) cables | material |  | 143.8 |  |
| Duct bank for (15) cables | material |  | 107.7 |  |
| HV Cable Road Crossing | material |  | 62.3 |  |
| Road crossing ducts, 2 ways (2 x 150mm HDPE) | material |  | 24.6 |  |
| Road crossing ducts, 2 ways (2 x 110mm UPVC) | material |  | 15.4 |  |
| Road crossing ducts, 3 ways (3 x 110mm UPVC) | material |  | 22 |  |
| 4C-300mm2 CU/XLPE / PVC ARMORED CABLE | material |  | 91.4 |  |
| 4C-240mm2 CU/XLPE / PVC ARMORED CABLE | material |  | 74.6 |  |
| 4C-185mm2 CU/XLPE / PVC ARMORED CABLE | material |  | 57.6 |  |
| 4C-50mm2 CU/XLPE / PVC ARMORED CABLE | material |  | 16.8 |  |
| 4C-16mm2 CU/XLPE / PVC ARMORED CABLE | material |  | 5.9 |  |
| 4C-16MM2 CU/XLPE / PVC CABLE | material |  | 5.4 |  |
| 1Cx150sq.mm2,Cu, PVC wire | material |  | 10.5 |  |
| 1Cx120sq.mm2,Cu, PVC wire | material |  | 8.7 |  |
| 1Cx95sq.mm,Cu, PVC wire | material |  | 7 |  |
| 1Cx70sq.mm2,Cu, PVC wire | material |  | 5.2 |  |
| 1Cx25sq.mm2,Cu, PVC wire | material |  | 2.1 |  |
| 1Cx16sq.mm2,Cu, PVC wire | material |  | 1 |  |
| 1Cx10sq.mm2,Cu, PVC wire | material |  | 0.8 |  |
| Supply and installation of KWH meter mounting frame including concrete block for installation of KWH meter | material |  | 181.8 |  |
| Street Lighting panels LCP (01) | material |  | 2396.1 |  |
| Lighting poles with 1 arm, height of (12) meters, including the power distribution box, cables, and RCC foundation. | material |  | 364.6 |  |
| Lighting poles with 2 arms, height of (12) meters, including the power distribution box, cables, and RCC foundation. | material |  | 437.1 |  |
| Street Lighting( LED) Luminaire of Output ? 20,965 lumen complete with control gear and lamp, (129.1) WATT. | material |  | 59.4 |  |
| Including earthing of lighting poles, masts, feeder pillars, unit substations and LV feeders. | material |  | 17.4 |  |
| 2-ways ducts, 50mm diameter | material |  | 5.3 |  |
| 6-ways ducts, 110mm diameter | material |  | 7.6 |  |
| 9-ways ducts, 6 x 160mm & 2 x 100mm | material |  | 29.9 |  |
| Manhole Type 2 (1600 x 1600 x 2000) | material |  | 491.7 |  |
| Manhole Type 3 (1200 x 1200 x 2000) | material |  | 464.1 |  |
| 6 PVC ducts 150x200 mm (60mm diameter) | material |  | 4.8 |  |
| 6 PVC ducts 600x800 mm (120mm diameter) | material |  | 24.8 |  |
| 6 PVC ducts 800x800 mm (170mm diameter) | material |  | 25.2 |  |
| NVR Server with RAID (5, 6 or 10) to record all cameras storage 80TB with all hardware / software / licenses etc. | material |  | 9815.4 |  |
| VMS Server with RAID (5, 6 or 10) complete Hardware / Software with one Color Laser Printer and all associated | material |  | 5608.8 |  |
| Licenses for Cameras, Workstations and Keyboards | material |  | 56021.1 |  |
| Work Station (MMI with two monitors each, for Monitoring for CCTV & ACS) | material |  | 2237.7 |  |
| Keyboard with joystick for CCTV with all accessories as per specification | material |  | 605.9 |  |
| Pole mounted IP( PoE) Fixed camera, 5MP,IP 66, IR illumination, 3-8mm varifocal, auto iris lens type | material |  | 410.7 |  |
| Wall mounted IP( PoE) Fixed camera, 5MP,IP 66, IR illumination, 3-8mm varifocal, auto iris lens type | material |  | 410.7 |  |
| 5MP Dome camera ceiling Mounted IP (PoE) indoor | material |  | 417.9 |  |
| 5MP PTZ Multi Sensor Camera IP(PoE) 360 Degree View Outdoor with accessories (IP 66) | material |  | 1816.1 |  |
| 8 Port Industrial PoE Switch 10/100BaseT (0 deg to +70 deg. Celsius) | material |  | 1089 |  |
| Filed Equipment cabinet (FEC), with fan and ventilation, NEMEX 4X ,door, minimum size (600x600x400mm) | material |  | 646.2 |  |
| 6 PVC ducts 200x150 mm (60mm diameter) | material |  | 11.2 |  |
| 2-ways ducts, 50mm diameter | material |  | 5.9 |  |
| IP Phone Communication server (hot standby) 50 Port equipped, Gateway, Gatekeeper, H.323, SIP, redundant Power etc. | material |  | 5608.8 |  |
| IP Phone Voice gateway | material |  |  |  |
| Voice IP Phone | material |  | 180 |  |
| NMS Server for IP phone and NETWORK Elements | material |  | 4200 |  |
| NMS Workstation | material |  | 1866 |  |
| Firm Ware, software & licenses | material |  | 3000 |  |
| Data Cable | material |  | 420 |  |
| Power Cable | material |  | 180 |  |
| Layer 3, 24 Port non-PoE switch10/1000BaseT/LX (-40 deg to +70 deg. Celsius), stack module and associated | material |  | 4213.6 |  |
| Layer 2, 24 Port non-PoE switch10/1000BaseT (-40 deg to +70 deg. Celsiu | material |  | 4213.6 |  |
| Network Management System Server | material |  | 11187.8 |  |
| Network Management System workstation | material |  | 2237.7 |  |
| 42U rack dimension (W x H x L) 800 x 2000 x 1000 mm | material |  | 652.7 |  |
| 12U rack dimension (W x H x L) 600 x 625 x 600 mm | material |  | 279.8 |  |
| 06C Optical Fiber SM | material |  | 0.6 |  |
| 48C Optical Fiber SM | material |  | 2.9 |  |
| 48 Core Splice Closure | material |  | 130.6 |  |
| Optical fiber patch cord 5m | material |  | 15 |  |
| Data Cable (STP CAT 6A) | material |  | 0.5 |  |
| 3C Power Cable armored 1.5mm2 | material |  | 1 |  |
| 3C Power Cable armored 2.5 mm2 | material |  | 1.2 |  |
| UTP CAT6A Patch Cord 1m/3m/5m | material |  | 5.7 |  |
| Access Control Unit | material |  | 466.2 |  |
| Access Card Reader | material |  | 9.4 |  |
| Magnetic Lock | material |  | 223.8 |  |
| Break Glass | material |  | 37.4 |  |
| Exit Push button | material |  | 18.8 |  |
| Door Sensor | material |  | 18.8 |  |
| Biometrics Reader | material |  | 65.3 |  |
| Smart Card Printer | material |  | 932.4 |  |
| Card Issue Work Station | material |  | 1491.8 |  |
| Photographic Camera with stand | material |  | 1118.9 |  |
| Interface modules with CCTV, Fire and other systems | material |  | 4736.3 |  |
| Excavations (including Roads , Plots and Pond) | material |  | 0.5 |  |
| Embankments to the Site and Roads (including Roads , Plots and Pond) | material |  | 1.1 |  |
| Subgrade | material |  | 4.9 |  |
| Aggregate base course | material |  | 10.1 |  |
| Bituminous base course (Grading I - Class A), including Prime Coat (MC1) | material |  | 61.2 |  |
| Bituminous concrete wearing course, (Grading I - Class A), including tack coat (RC2) | material |  | 61.8 |  |
| Precast Concrete Curbstone 150X300X900 Type (K1-A) | material |  | 4.8 |  |
| Precast Concrete Curbstone 100X200X500 Type (K4) | material |  | 4.8 |  |
| Precast Concrete Curbstone 150X300X500 Type (K1-B) | material |  | 4.8 |  |
| Precast Concrete Curbstone Type (K1-C) | material |  | 4.8 |  |
| Flush Kerb Type (D) | material |  | 4.8 |  |
| 60mm thick | material |  | 6.6 |  |
| 80mm thick | material |  | 8.8 |  |
| Retroreflective Thermoplastic White Traffic lines | material |  | 4.2 |  |
| Retroreflective Thermoplastic Yellow, Traffic lines | material |  | 4.2 |  |
| Traffic signs, ground mounted, Sheet Aluminum, (breakaway) Single post IPE, with all accessories | material |  | 96 |  |
| Precast Concrete Blister Warning Tactile Paver Brown Finish 300*300*60mm | material |  | 18 |  |
| Single Catch Basin 1000mm x 1000mm | material |  | 234 |  |
| Double Catch Basin 1200mm x 2300mm | material |  | 306 |  |
| NVR Server with RAID (5, 6 or 10) to record all cameras storage 80TB with all hardware / software / licenses etc. | material |  | 19630.8 |  |
| VMS Server with RAID (5, 6 or 10) complete Hardware / Software with one Color Laser Printer and all associated | material |  | 11217.6 |  |
| Licenses for Cameras, Workstations and Keyboards | material |  | 112042 |  |
| Work Station (MMI with two monitors each, for Monitoring for CCTV & ACS) | material |  | 4475.4 |  |
| Keyboard with joystick for CCTV with all accessories as per specification | material |  | 1211.8 |  |
| Pole mounted IP( PoE) Fixed camera, 5MP,IP 66, IR illumination, 3-8mm varifocal, auto iris lens type | material |  | 821.4 |  |
| Wall mounted IP( PoE) Fixed camera, 5MP,IP 66, IR illumination, 3-8mm varifocal, auto iris lens type | material |  | 821.4 |  |
| 5MP Dome camera ceiling Mounted IP (PoE) indoor | material |  | 835.8 |  |
| 5MP PTZ Multi Sensor Camera IP(PoE) 360 Degree View Outdoor with accessories (IP 66) | material |  | 3632.2 |  |
| 8 Port Industrial PoE Switch 10/100BaseT (0 deg to +70 deg. Celsius) | material |  | 2178 |  |
| Filed Equipment cabinet (FEC), with fan and ventilation, NEMEX 4X ,door, minimum size (600x600x400mm) | material |  | 1292.4 |  |
| IP Phone Communication server (hot standby) 50 Port equipped, Gateway, Gatekeeper, H.323, SIP, redundant Power etc. | material |  | 11217.6 |  |
| IP Phone Voice gateway | material |  |  |  |
| Voice IP Phone | material |  | 360 |  |
| NMS Server for IP phone and NETWORK Elements | material |  | 8400 |  |
| NMS Workstation | material |  | 3732 |  |
| Firm Ware, software & licenses | material |  | 6000 |  |
| Data Cable | material |  | 840 |  |
| Power Cable | material |  | 360 |  |
| Layer 3, 24 Port non-PoE switch10/1000BaseT/LX (-40 deg to +70 deg. Celsius), stack module and associated | material |  | 8427.2 |  |
| Layer 2, 24 Port non-PoE switch10/1000BaseT (-40 deg to +70 deg. Celsiu | material |  | 8427.2 |  |
| Network Management System Server | material |  | 22375.6 |  |
| Network Management System workstation | material |  | 4475.4 |  |
| 42U rack dimension (W x H x L) 800 x 2000 x 1000 mm | material |  | 1305.4 |  |
| 12U rack dimension (W x H x L) 600 x 625 x 600 mm | material |  | 559.6 |  |
| 06C Optical Fiber SM | material |  | 1.2 |  |
| 48C Optical Fiber SM | material |  | 5.8 |  |
| 48 Core Splice Closure | material |  | 261.2 |  |
| Optical fiber patch cord 5m | material |  | 30 |  |
| Data Cable (STP CAT 6A) | material |  | 1 |  |
| 3C Power Cable armored 1.5mm2 | material |  | 2 |  |
| 3C Power Cable armored 2.5 mm2 | material |  | 2.4 |  |
| UTP CAT6A Patch Cord 1m/3m/5m | material |  | 11.4 |  |
| Access Control Unit | material |  | 932.4 |  |
| Access Card Reader | material |  | 18.8 |  |
| Magnetic Lock | material |  | 447.6 |  |
| Break Glass | material |  | 74.8 |  |
| Exit Push button | material |  | 37.6 |  |
| Door Sensor | material |  | 37.6 |  |
| Biometrics Reader | material |  | 130.6 |  |
| Smart Card Printer | material |  | 1864.8 |  |
| Card Issue Work Station | material |  | 2983.6 |  |
| Photographic Camera with stand | material |  | 2237.8 |  |
| Interface modules with CCTV, Fire and other systems | material |  | 9472.6 |  |
| Depth Between 0m to 1.50m | material |  | 290.78 |  |
| Depth Between 1.50m to 2.50m | material |  | 331.65 |  |
| Depth > 2.50m | material |  | 372.52 |  |
| Depth Between 1.50m to 2.50m | material |  | 308.87 |  |
| Depth Between 2.50m to 3.50m | material |  | 400.66 |  |
| Depth > 3.50m | material |  | 419.42 |  |
| Depth Between 2.50m to 3.50m | material |  | 462.3 |  |
| Depth > 3.50m | material |  | 485.75 |  |
| Depth Between 0m to 1.50m | material |  | 424.11 |  |
| Depth Between 1.50m to 2.50m | material |  | 448.9 |  |
| Depth Between 2.50m to 3.50m | material |  | 522.6 |  |
| Depth > 3.50m | material |  | 542.03 |  |
| Depth Between 2.50m to 3.50m | material |  | 598.31 |  |
| Depth > 3.50m | material |  | 620.42 |  |
| Depth Between 3.50m to 4.50m | material |  | 695.46 |  |
| Depth > 4.50m | material |  | 719.58 |  |
| Depth Between 3.50m to 4.50m | material |  | 766.48 |  |
| Depth > 4.50m | material |  | 809.36 |  |
| Plumber | labor |  |  |  |
| JCB | equipment |  |  |  |
| Dump Truck | equipment |  |  |  |
| Single Catch Basin 1000mm x 1000mm | material |  | 5226 |  |
| Double Catch Basin 1200mm x 2300mm | material |  | 6834 |  |
| Water Tanker | equipment |  |  |  |
| Depth Between 0m to 1.50m | material |  | 48.24 |  |
| Depth Between 1.50m to 2.50m | material |  | 62.31 |  |
| Depth > 2.50m | material |  | 75.71 |  |
| Depth Between 0m to 1.50m | material |  | 71.69 |  |
| Depth Between 1.50m to 2.50m | material |  | 84.42 |  |
| Depth > 2.50m | material |  | 98.49 |  |
| Depth Between 0m to 1.50m | material |  | 98.49 |  |
| Depth Between 1.50m to 2.50m | material |  | 111.89 |  |
| Depth > 2.50m | material |  | 124.62 |  |
| Depth Between 0m to 1.50m | material |  | 184.25 |  |
| Depth Between 1.50m to 2.50m | material |  | 201 |  |
| Depth > 2.50m | material |  | 215.07 |  |
| 3-outlet fire hydrant (2 x 2.5 inch and 1 x 4.5 inch) in the form of a separate dry vacuum cylinder, complete according to drawings. | material |  | 7638 |  |
| pipe line O.D 32 mm PN 10, in depth 0 to 1.5 m | material |  | 20.1 |  |
| pipe line O.D 40 mm PN 10, in depth 0 to 1.5 m | material |  | 28.14 |  |
| pipe line O.D 50 mm PN 10, in depth 0 to 1.5 m | material |  | 40.2 |  |
| Gate valve 50 mm PN16 | material |  | 964.8 |  |
| Direct Burried Gate valve 40 mm PN16 | material |  | 964.8 |  |
| Flushing Bronze gate valve dia 1.5" inside PVC box | material |  | 1206 |  |
| Air release valve 1.5" inside PVC box | material |  | 1206 |  |
| Extra flexible pressure compensating on surface inline dripline`s, O.D. is 16.1 mm | material |  | 10.05 |  |
| Electrical Solenoid Valve ( 1.5") inside PVC box | material |  | 964.8 |  |
| Electrical Solenoid Valve ( 2") inside PVC box | material |  | 1206 |  |
| Quick coupling valve 1" inside a round valve box 10" size with a manual gate valve, hose swivel and key with all accessories | material |  | 2010 |  |
| Advanced Irrigation controller subject to client approval, can connect with Centarl Control system | material |  | 20100 |  |
| Decoder cables 12 AWG between valves and controllers, The cables shall be pulled through 32Ø UPVC conduit | material |  | 8.04 |  |
| Preparing the irrigation program for the entire system and providing technical services for monitoring and controlling the central irrigation systems | material |  | 24120 |  |
| Excavation for Trench size 40cm wide and 80cm deep (for 1 cable) | material |  | 27.47 |  |
| Excavation for Trench Size 60cm wide and 80cm deep (for 2 cables) | material |  | 27.47 |  |
| Excavation for Trench Size 90cm wide and 80cm deep (for 3 cables) | material |  | 27.47 |  |
| Excavation for Trench Size 180cm wide and 80cm deep (for 6 cables) | material |  | 27.47 |  |
| Excavation for Trench Size 210 cm wide and 80cm deep (for 7 cables) | material |  | 27.47 |  |
| Excavation for Trench Size 240cm wide and 80cm deep (for 8 cables) | material |  | 27.47 |  |
| Duct bank for (33) cables | material |  | 1449.21 |  |
| Duct bank for (21) cables | material |  | 963.46 |  |
| Duct bank for (15) cables | material |  | 721.59 |  |
| HV Cable Road Crossing | material |  | 417.41 |  |
| Electrical Technician | labor |  |  |  |
| Cable Drum Trailer | equipment |  |  |  |
| Boom Truck | equipment |  |  |  |
| Pulling Machine | equipment |  |  |  |
| Road crossing ducts, 2 ways (2 x 150mm HDPE) | material |  | 164.82 |  |
| Road crossing ducts, 2 ways (2 x 110mm UPVC) | material |  | 103.18 |  |
| Road crossing ducts, 3 ways (3 x 110mm UPVC) | material |  | 147.4 |  |
| 4C-300mm2 CU/XLPE / PVC ARMORED CABLE | material |  | 612.38 |  |
| 4C-240mm2 CU/XLPE / PVC ARMORED CABLE | material |  | 499.82 |  |
| 4C-185mm2 CU/XLPE / PVC ARMORED CABLE | material |  | 385.92 |  |
| 4C-50mm2 CU/XLPE / PVC ARMORED CABLE | material |  | 112.56 |  |
| 4C-16mm2 CU/XLPE / PVC ARMORED CABLE | material |  | 39.53 |  |
| 4C-16MM2 CU/XLPE / PVC CABLE | material |  | 36.18 |  |
| 1Cx150sq.mm2,Cu, PVC wire | material |  | 70.35 |  |
| 1Cx120sq.mm2,Cu, PVC wire | material |  | 58.29 |  |
| 1Cx95sq.mm,Cu, PVC wire | material |  | 46.9 |  |
| 1Cx70sq.mm2,Cu, PVC wire | material |  | 34.84 |  |
| 1Cx25sq.mm2,Cu, PVC wire | material |  | 14.07 |  |
| 1Cx16sq.mm2,Cu, PVC wire | material |  | 6.7 |  |
| 1Cx10sq.mm2,Cu, PVC wire | material |  | 5.36 |  |
| Lighting poles with 1 arm, height of (12) meters, including the power distribution box, cables, and RCC foundation. | material |  | 2442.82 |  |
| Lighting poles with 2 arms, height of (12) meters, including the power distribution box, cables, and RCC foundation. | material |  | 2928.57 |  |
| Street Lighting( LED) Luminaire of Output ? 20,965 lumen complete with control gear and lamp, (129.1) WATT. | material |  | 397.98 |  |
| Street Lighting panels LCP (01) | material |  | 16053.9 |  |
| 2-ways ducts, 50mm diameter | material |  | 35.51 |  |
| 6-ways ducts, 110mm diameter | material |  | 50.92 |  |
| 9-ways ducts, 6 x 160mm & 2 x 100mm | material |  | 200.33 |  |
| 6 PVC ducts 200x150 mm (60mm diameter) | material |  | 75.04 |  |
| 2-ways ducts, 50mm diameter | material |  | 39.53 |  |
| NVR Server with RAID (5, 6 or 10) to record all cameras storage 80TB with all hardware / software / licenses etc. | material |  | 65763.2 |  |
| VMS Server with RAID (5, 6 or 10) complete Hardware / Software with one Color Laser Printer and all associated | material |  | 37579 |  |
| Licenses for Cameras, Workstations and Keyboards | material |  | 375341 |  |
| Work Station (MMI with two monitors each, for Monitoring for CCTV & ACS) | material |  | 14992.6 |  |
| Keyboard with joystick for CCTV with all accessories as per specification | material |  | 4059.53 |  |
| Pole mounted IP( PoE) Fixed camera, 5MP,IP 66, IR illumination, 3-8mm varifocal, auto iris lens type | material |  | 2751.69 |  |
| Wall mounted IP( PoE) Fixed camera, 5MP,IP 66, IR illumination, 3-8mm varifocal, auto iris lens type | material |  | 2751.69 |  |
| 5MP Dome camera ceiling Mounted IP (PoE) indoor | material |  | 2799.93 |  |
| 5MP PTZ Multi Sensor Camera IP(PoE) 360 Degree View Outdoor with accessories (IP 66) | material |  | 12167.9 |  |
| 8 Port Industrial PoE Switch 10/100BaseT (0 deg to +70 deg. Celsius) | material |  | 7296.3 |  |
| Filed Equipment cabinet (FEC), with fan and ventilation, NEMEX 4X ,door, minimum size (600x600x400mm) | material |  | 4329.54 |  |
| IP Phone Communication server (hot standby) 50 Port equipped, Gateway, Gatekeeper, H.323, SIP, redundant Power etc. | material |  | 37579 |  |
| IP Phone Voice gateway | material |  |  |  |
| Voice IP Phone | material |  | 1206 |  |
| NMS Server for IP phone and NETWORK Elements | material |  | 28140 |  |
| NMS Workstation | material |  | 12502.2 |  |
| Firm Ware, software & licenses | material |  | 20100 |  |
| Data Cable | material |  | 2814 |  |
| Power Cable | material |  | 1206 |  |
| Layer 3, 24 Port non-PoE switch10/1000BaseT/LX (-40 deg to +70 deg. Celsius), stack module and associated | material |  | 28231.1 |  |
| Layer 2, 24 Port non-PoE switch10/1000BaseT (-40 deg to +70 deg. Celsiu | material |  | 28231.1 |  |
| Network Management System Server | material |  | 74958.3 |  |
| Network Management System workstation | material |  | 14992.6 |  |
| 42U rack dimension (W x H x L) 800 x 2000 x 1000 mm | material |  | 4373.09 |  |
| 12U rack dimension (W x H x L) 600 x 625 x 600 mm | material |  | 1874.66 |  |
| 06C Optical Fiber SM | material |  | 4.02 |  |
| 48C Optical Fiber SM | material |  | 19.43 |  |
| 48 Core Splice Closure | material |  | 875.02 |  |
| Optical fiber patch cord 5m | material |  | 100.5 |  |
| Data Cable (STP CAT 6A) | material |  | 3.35 |  |
| 3C Power Cable armored 1.5mm2 | material |  | 6.7 |  |
| 3C Power Cable armored 2.5 mm2 | material |  | 8.04 |  |
| UTP CAT6A Patch Cord 1m/3m/5m | material |  | 38.19 |  |
| Access Control Unit | material |  | 3123.54 |  |
| Access Card Reader | material |  | 62.98 |  |
| Magnetic Lock | material |  | 1499.46 |  |
| Break Glass | material |  | 250.58 |  |
| Exit Push button | material |  | 125.96 |  |
| Door Sensor | material |  | 125.96 |  |
| Biometrics Reader | material |  | 437.51 |  |
| Manhole Type 2 (1600 x 1600 x 2000) | material |  | 3294.39 |  |
| Manhole Type 3 (1200 x 1200 x 2000) | material |  | 3109.47 |  |
| Precast Concrete Curbstone 150X300X900 Type (K1-A) | material |  | 32.16 |  |
| Precast Concrete Curbstone 100X200X500 Type (K4) | material |  | 32.16 |  |
| Precast Concrete Curbstone 150X300X500 Type (K1-B) | material |  | 32.16 |  |
| Precast Concrete Curbstone Type (K1-C) | material |  | 32.16 |  |
| Flush Kerb Type (D) | material |  | 32.16 |  |
| Mason | labor |  |  | ï»? |
| Compactor | equipment |  |  |  |
| Forklift | equipment |  |  | ï»? |
| 60mm thick | material |  | 44.22 |  |
| 80mm thick | material |  | 58.96 |  |
| Subgrade | material |  | 32.83 |  |
| Aggregate base course | material |  | 67.67 |  |
| Depth Between 0m to 1.50m | material |  | 162.81 |  |
| Depth Between 1.50m to 2.50m | material |  | 174.2 |  |
| Depth > 2.50m | material |  | 266.66 |  |
| Depth Between 0m to 1.50m | material |  | 186.26 |  |
| Depth Between 1.50m to 2.50m | material |  | 199.66 |  |
| Depth Between 2.50m to 3.50m | material |  | 291.45 |  |
| Depth > 3.50m | material |  | 308.87 |  |
| HDPE Force Main (PE 100, SDR 11, PN 16 bar) DN 160 mm diameter, in trenches depth: 0- 1.5m | material |  | 203.68 |  |
| HDPE Force Main (PE 100, SDR 11, PN 16 bar) DN 160 mm diameter, in trenches depth: 1.51- 2.5m | material |  | 223.78 |  |
| Excavations (including Roads , Plots and Pond) | material |  | 4.5 |  |
| Dozer | equipment |  |  |  |
| Embankments to the Site and Roads (including Roads , Plots and Pond) | material |  | 9.9 |  |
| 6 PVC ducts 150x200 mm (60mm diameter) | material |  | 32.16 |  |
| 6 PVC ducts 600x800 mm (120mm diameter) | material |  | 166.16 |  |
| 6 PVC ducts 800x800 mm (170mm diameter) | material |  | 168.84 |  |
| Wash out chamber (2500x 2500mm) | material |  | 16080 |  |
| Air valve chamber (1000x 1000 mm) | material |  | 8040 |  |
| Including earthing of lighting poles, masts, feeder pillars, unit substations and LV feeders. | material |  | 116.58 |  |
| Retroreflective Thermoplastic White Traffic lines | material |  | 28.14 |  |
| Retroreflective Thermoplastic Yellow, Traffic lines | material |  | 28.14 |  |
| Road Marking Machine | equipment |  |  | ï»? |
| Traffic signs, ground mounted, Sheet Aluminum, (breakaway) Single post IPE, with all accessories | material |  | 643.2 |  |
| Precast Concrete Blister Warning Tactile Paver Brown Finish 300*300*60mm | material |  | 120.6 |  |
| Bituminous base course (Grading I - Class A), including Prime Coat (MC1) | material |  | 410.04 |  |
| MC1 Sprinkler | equipment |  |  | ï»? |
| Bituminous concrete wearing course, (Grading I - Class A), including tack coat (RC2) | material |  | 414.06 |  |
| Bob Cat | equipment |  |  | ï»? |
| Asphalt Paver | equipment |  |  | ï»? |
| Depth: 0 - 1.5m | material |  | 6901.67 |  |
| Depth: 1.51 - 2.5m | material |  | 793.28 |  |
| Depth: 2.51 - 3.5m | material |  | 11349.8 |  |
| Depth > 3.50m | material |  | 13436.2 |  |
| MH depth 1.5 - 2.5m | material |  | 2367 |  |
| MH depth 2.5 - 3.5m | material |  | 3388 |  |
| MH depth > 3.50m | material |  |  |  |
| MH depth 2.5 -3.5m | material |  | 4374 |  |
| MH depth > 3.50m | material |  | 5142.4 |  |
| Depth Between 1.50m to 2.50m | material |  | 92.2 |  |
| Depth Between 2.50m to 3.50m | material |  | 119.6 |  |
| Depth > 3.50m | material |  | 125.2 |  |
| Depth Between 2.50m to 3.50m | material |  | 138 |  |
| Depth > 3.50m | material |  | 145 |  |
| Depth Between 0m to 1.50m | material |  | 126.6 |  |
| Depth Between 1.50m to 2.50m | material |  | 134 |  |
| Depth Between 2.50m to 3.50m | material |  | 156 |  |
| Depth > 3.50m | material |  | 161.8 |  |
| Depth Between 2.50m to 3.50m | material |  | 178.6 |  |
| Depth > 3.50m | material |  | 185.2 |  |
| Depth Between 3.50m to 4.50m | material |  | 207.6 |  |
| Depth > 4.50m | material |  | 214.8 |  |
| Depth Between 3.50m to 4.50m | material |  | 228.8 |  |
| Depth > 4.50m | material |  | 241.6 |  |
| Single Catch Basin 1000mm x 1000mm | material |  | 1560 |  |
| Double Catch Basin 1200mm x 2300mm | material |  | 2040 |  |
| Depth Between 0m to 1.50m | material |  | 48.6 |  |
| Depth Between 1.50m to 2.50m | material |  | 52 |  |
| Depth > 2.50m | material |  | 79.6 |  |
| Depth Between 0m to 1.50m | material |  | 55.6 |  |
| Depth Between 1.50m to 2.50m | material |  | 59.6 |  |
| Depth Between 2.50m to 3.50m | material |  | 87 |  |
| Depth > 3.50m | material |  | 92.2 |  |
| HDPE Force Main (PE 100, SDR 11, PN 16 bar) DN 160 mm diameter, in trenches depth: 0- 1.5m | material |  | 60.8 |  |
| HDPE Force Main (PE 100, SDR 11, PN 16 bar) DN 160 mm diameter, in trenches depth: 1.51- 2.5m | material |  | 66.8 |  |
| Depth: 0 - 1.5m | material |  | 2060.2 |  |
| Depth: 1.51 - 2.5m | material |  | 236.8 |  |
| Depth: 2.51 - 3.5m | material |  | 3388 |  |
| Depth > 3.50m | material |  | 4010.8 |  |
| Depth Between 0m to 1.50m | material |  | 14.4 |  |
| Depth Between 1.50m to 2.50m | material |  | 18.6 |  |
| Depth > 2.50m | material |  | 22.6 |  |
| Depth Between 0m to 1.50m | material |  | 21.4 |  |
| Depth Between 1.50m to 2.50m | material |  | 25.2 |  |
| Depth > 2.50m | material |  | 29.4 |  |
| Depth Between 0m to 1.50m | material |  | 29.4 |  |
| Depth Between 1.50m to 2.50m | material |  | 33.4 |  |
| Depth > 2.50m | material |  | 37.2 |  |
| Depth Between 0m to 1.50m | material |  | 55 |  |
| Depth Between 1.50m to 2.50m | material |  | 60 |  |
| Depth > 2.50m | material |  | 64.2 |  |
| Gate valves Dia 50 mm | material |  | 360 |  |
| Gate valves Dia 100 mm | material |  | 432 |  |
| Gate valves Dia 150 mm | material |  | 576 |  |
| Gate valves Dia 250 mm | material |  | 1008 |  |
| Air valves with Dia 50 mm | material |  | 1920 |  |
| Washout valve Dia 100 mm | material |  | 1920 |  |
| Wash out chamber (2500x 2500mm) | material |  | 4800 |  |
| Air valve chamber (1000x 1000 mm) | material |  | 2400 |  |
| Flow meter chamber (1500x 2500 mm) | material |  | 4800 |  |
| Flow meter dia 100 mm | material |  | 6120 |  |
| pipe line O.D 32 mm PN 10, in depth 0 to 1.5 m | material |  | 6 |  |
| pipe line O.D 40 mm PN 10, in depth 0 to 1.5 m | material |  | 8.4 |  |
| pipe line O.D 50 mm PN 10, in depth 0 to 1.5 m | material |  | 12 |  |
| Gate valve 50 mm PN16 | material |  | 288 |  |
| Direct Burried Gate valve 40 mm PN16 | material |  | 288 |  |
| Pressure–compensating bubblers 110 Lit/Hr | material |  | 3.4 |  |
| Flushing Bronze gate valve dia 1.5" inside PVC box | material |  | 360 |  |
| Air release valve 1.5" inside PVC box | material |  | 360 |  |
| Extra flexible pressure compensating on surface inline dripline`s, O.D. is 16.1 mm | material |  | 3 |  |
| Electrical Solenoid Valve ( 1.5") inside PVC box | material |  | 288 |  |
| Electrical Solenoid Valve ( 2") inside PVC box | material |  | 360 |  |
| Quick coupling valve 1" inside a round valve box 10" size with a manual gate valve, hose swivel and key with all accessories | material |  | 600 |  |
| Advanced Irrigation controller subject to client approval, can connect with Centarl Control system | material |  | 6000 |  |
| Decoder cables 12 AWG between valves and controllers, The cables shall be pulled through 32Ø UPVC conduit | material |  | 2.4 |  |
| Preparing the irrigation program for the entire system and providing technical services for monitoring and controlling the central irrigation systems | material |  | 7200 |  |
| Excavation for Trench size 40cm wide and 80cm deep (for 1 cable) | material |  | 8.2 |  |
| Excavation for Trench Size 60cm wide and 80cm deep (for 2 cables) | material |  | 8.2 |  |
| Excavation for Trench Size 90cm wide and 80cm deep (for 3 cables) | material |  | 8.2 |  |
| Excavation for Trench Size 180cm wide and 80cm deep (for 6 cables) | material |  | 8.2 |  |
| Excavation for Trench Size 210 cm wide and 80cm deep (for 7 cables) | material |  | 8.2 |  |
| Excavation for Trench Size 240cm wide and 80cm deep (for 8 cables) | material |  | 8.2 |  |
| Duct bank for (33) cables | material |  | 432.6 |  |
| Duct bank for (21) cables | material |  | 287.6 |  |
| Duct bank for (15) cables | material |  | 215.4 |  |
| HV Cable Road Crossing | material |  | 124.6 |  |
| Road crossing ducts, 2 ways (2 x 150mm HDPE) | material |  | 49.2 |  |
| Road crossing ducts, 2 ways (2 x 110mm UPVC) | material |  | 30.8 |  |
| Road crossing ducts, 3 ways (3 x 110mm UPVC) | material |  | 44 |  |
| 4C-300mm2 CU/XLPE / PVC ARMORED CABLE | material |  | 182.8 |  |
| 4C-240mm2 CU/XLPE / PVC ARMORED CABLE | material |  | 149.2 |  |
| 4C-185mm2 CU/XLPE / PVC ARMORED CABLE | material |  | 115.2 |  |
| 4C-50mm2 CU/XLPE / PVC ARMORED CABLE | material |  | 33.6 |  |
| 4C-16mm2 CU/XLPE / PVC ARMORED CABLE | material |  | 11.8 |  |
| 4C-16MM2 CU/XLPE / PVC CABLE | material |  | 10.8 |  |
| 1Cx150sq.mm2,Cu, PVC wire | material |  | 21 |  |
| 1Cx120sq.mm2,Cu, PVC wire | material |  | 17.4 |  |
| 1Cx95sq.mm,Cu, PVC wire | material |  | 14 |  |
| 1Cx70sq.mm2,Cu, PVC wire | material |  | 10.4 |  |
| 1Cx25sq.mm2,Cu, PVC wire | material |  | 4.2 |  |
| 1Cx16sq.mm2,Cu, PVC wire | material |  | 2 |  |
| 1Cx10sq.mm2,Cu, PVC wire | material |  | 1.6 |  |
| Supply and installation of KWH meter mounting frame including concrete block for installation of KWH meter | material |  | 363.6 |  |
| Lighting poles with 1 arm, height of (12) meters, including the power distribution box, cables, and RCC foundation. | material |  | 729.2 |  |
| Lighting poles with 2 arms, height of (12) meters, including the power distribution box, cables, and RCC foundation. | material |  | 874.2 |  |
| Street Lighting( LED) Luminaire of Output ? 20,965 lumen complete with control gear and lamp, (129.1) WATT. | material |  | 118.8 |  |
| Including earthing of lighting poles, masts, feeder pillars, unit substations and LV feeders. | material |  | 34.8 |  |
| Street Lighting panels LCP (01) | material |  | 4792.2 |  |
| 2-ways ducts, 50mm diameter | material |  | 10.6 |  |
| 6-ways ducts, 110mm diameter | material |  | 15.2 |  |
| 9-ways ducts, 6 x 160mm & 2 x 100mm | material |  | 59.8 |  |
| 6 PVC ducts 150x200 mm (60mm diameter) | material |  | 9.6 |  |
| 6 PVC ducts 600x800 mm (120mm diameter) | material |  | 49.6 |  |
| 6 PVC ducts 800x800 mm (170mm diameter) | material |  | 50.4 |  |
| Manhole Type 2 (1600 x 1600 x 2000) | material |  | 983.4 |  |
| Manhole Type 3 (1200 x 1200 x 2000) | material |  | 928.2 |  |
| 6 PVC ducts 200x150 mm (60mm diameter) | material |  | 22.4 |  |
| 2-ways ducts, 50mm diameter | material |  | 11.8 |  |
| 60mm thick | material |  | 13.2 |  |
| 80mm thick | material |  | 17.6 |  |
| Precast Concrete Curbstone 150X300X900 Type (K1-A) | material |  | 9.6 |  |
| Precast Concrete Curbstone 100X200X500 Type (K4) | material |  | 9.6 |  |
| Precast Concrete Curbstone 150X300X500 Type (K1-B) | material |  | 9.6 |  |
| Precast Concrete Curbstone Type (K1-C) | material |  | 9.6 |  |
| Flush Kerb Type (D) | material |  | 9.6 |  |
| Traffic signs, ground mounted, Sheet Aluminum, (breakaway) Single post IPE, with all accessories | material |  | 192 |  |
| Precast Concrete Blister Warning Tactile Paver Brown Finish 300*300*60mm | material |  | 36 |  |
| Retroreflective Thermoplastic White Traffic lines | material |  | 8.4 |  |
| Retroreflective Thermoplastic Yellow, Traffic lines | material |  | 8.4 |  |
| Depth Between 0m to 1.50m | material |  | 86.8 |  |
| Depth Between 1.50m to 2.50m | material |  | 99 |  |
| Depth > 2.50m | material |  | 111.2 |  |
| 3-outlet fire hydrant (2 x 2.5 inch and 1 x 4.5 inch) in the form of a separate dry vacuum cylinder, complete according to drawings. | material |  | 2280 |  |
| MH depth 1.5 - 2.5m | material |  | 7929.45 |  |
| MH depth 2.5 - 3.5m | material |  | 11349.8 |  |
| MH depth > 3.50m | material |  |  |  |
| MH depth 2.5 -3.5m | material |  | 14652.9 |  |
| MH depth > 3.50m | material |  | 17227 |  |
| Price | material | SAR | 1 |  |
| Finished grouted riprap for Pond 300mm as per drawings | material |  | 3.6 |  |
| Finished grouted riprap for Pond 300mm as per drawings | material |  | 24 |  |
| Subgrade | material |  | 9.8 |  |
| Aggregate base course | material |  | 20.2 |  |
| Bituminous base course (Grading I - Class A), including Prime Coat (MC1) | material |  | 122.4 |  |
| Bituminous concrete wearing course, (Grading I - Class A), including tack coat (RC2) | material |  | 123.6 |  |
| Finished grouted riprap for Pond 300mm as per drawings | material |  | 80.4 |  |
| Glass Fused Bolted (GLS) 1500 m3 Tank with associated accessories & manufacturer recommendation for the foundation | material |  | 18452.8 |  |
| Finished grouted riprap for Pond 300mm as per drawings | material |  | 12 |  |
| pipe line O.D 32 mm PN 10, in depth 0 to 1.5 m | material |  | 3 |  |
| pipe line O.D 40 mm PN 10, in depth 0 to 1.5 m | material |  | 4.2 |  |
| pipe line O.D 50 mm PN 10, in depth 0 to 1.5 m | material |  | 6 |  |
| Gate valve 50 mm PN16 | material |  | 144 |  |
| Direct Burried Gate valve 40 mm PN16 | material |  | 144 |  |
| Pressure–compensating bubblers 110 Lit/Hr | material |  | 1.7 |  |
| Flushing Bronze gate valve dia 1.5" inside PVC box | material |  | 180 |  |
| Air release valve 1.5" inside PVC box | material |  | 180 |  |
| Extra flexible pressure compensating on surface inline dripline`s, O.D. is 16.1 mm | material |  | 1.5 |  |
| Electrical Solenoid Valve ( 1.5") inside PVC box | material |  | 144 |  |
| Electrical Solenoid Valve ( 2") inside PVC box | material |  | 180 |  |
| Quick coupling valve 1" inside a round valve box 10" size with a manual gate valve, hose swivel and key with all accessories | material |  | 300 |  |
| Advanced Irrigation controller subject to client approval, can connect with Centarl Control system | material |  | 3000 |  |
| Decoder cables 12 AWG between valves and controllers, The cables shall be pulled through 32Ø UPVC conduit | material |  | 1.2 |  |
| Preparing the irrigation program for the entire system and providing technical services for monitoring and controlling the central irrigation systems | material |  | 3600 |  |
| 100 mm thickness lean concrete under the foundation | material |  | 42 |  |
| Foundation | material |  | 90 |  |
| Slab on Grade | material |  | 78 |  |
| Walls | material |  | 156 |  |
| Beams | material |  | 168 |  |
| Columns | material |  | 180 |  |
| Slabs | material |  | 132 |  |
| Lightweight Concrete Roof insulation as per Architect's specification | material |  | 5.4 |  |
| Common brickwork. 300mm thick; vertical straight wall complete with accessories. | material |  | 14.4 |  |
| Insulated brickwork. with expanded polystyrene 200mm thick; vertical straight wall complete with accessories . | material |  | 13.2 |  |
| Common brickwork. 150mm thick; vertical straight wall complete with accessories. | material |  | 10.8 |  |
| Two Layers of Bituminous Coating | material |  | 1.2 |  |
| 20x20 Approved Polysulfide Joint Sealant | material |  | 2.4 |  |
| 2 perpendicular layers of cold bitumen coats | material |  | 1.2 |  |
| 2 layer of 4mm HDPE membrane, 2 perpendicular layers cold bitumen coats | material |  | 6 |  |
| 1 layer EPOXY Paint 300 micron | material |  | 7.2 |  |
| Membrane fully bonded to prime deck and upstand | material |  | 5.4 |  |
| Geotextile Filter membrane uv resistance | material |  | 0.6 |  |
| 85mm thick thermal insulation | material |  | 3.6 |  |
| 1.5mm thick epdm waterproofing membrane | material |  | 2.4 |  |
| CW01 - 4500 mm width x 3700 mm height | material |  | 1698.3 |  |
| CW02 - 4500 mm width x 3700 mm height | material |  | 1698.4 |  |
| CW03 - 4500 mm width x 3700 mm height | material |  | 1698.4 |  |
| CW04 - 4500 mm width x 3700 mm height | material |  | 1698.4 |  |
| CW05 - 7500 mm width x 4250 mm height | material |  | 3251.3 |  |
| CW06 - 7500 mm width x 4250 mm height | material |  | 3251.3 |  |
| W01 - 1000 mm width x 2000 mm height | material |  | 204 |  |
| W02 - 2000 mm width x 2000 mm height | material |  | 408 |  |
| W03 - 2000 mm width x 1000 mm height | material |  | 204 |  |
| D2 - 900 mm x 2200 mm height temper door | material |  | 237.6 |  |
| D3 - 950 mm x 2000 mm height temper door | material |  | 228 |  |
| Supply and install 33mm thick Lexan cladding blue complete with necessary framings | material |  | 42 |  |
| Supply and install 50mm thick random cut stone cladding complete with 600m | material |  | 33.6 |  |
| Supply and install External plastering to walls and columns min. 15mm thick with cement mortar of specified grade including | material |  | 3.6 |  |
| Supply and install 2 coats of weatherproof paint at walls including one prime coat and | material |  | 4.2 |  |
| Supply and install 300*300mm terrazzo tiles with 150mm high skirting at perimeter with approv | material |  | 8.4 |  |
| Supply and install 300*300mm glazed ceramic wall tiles on cement mortar and including rough | material |  | 10.8 |  |
| Supply and install internal plastering and 2 coats of acrylic paint at walls includin | material |  | 3.6 |  |
| Supply and install 300*300mm glazed ceramic wall tiles on cement mortar and including rough and smooth p | material |  | 9.6 |  |
| Supply and install 600*600mm porcelain tiles with approved quality on 30 mm mortar inclu | material |  | 9.6 |  |
| Supply and install 12.5mm thk, gypsum board suspended ceiling including s | material |  | 9.6 |  |
| Guard room coping 350mm | material |  | 14.4 |  |
| Guard room coping 450mm | material |  | 19.2 |  |
| Stone coping 500mm | material |  | 21 |  |
| Stone coping 525mm | material |  | 21.6 |  |
| Supply and install MODON Signage with Logo Type 1 | material |  | 1200 |  |
| Supply and install MODON Signage Type 2 | material |  | 1200 |  |
| Supply and install "Triangle Style" signage | material |  | 240 |  |
| Office Chairs | material |  | 96 |  |
| Office Tables | material |  | 144 |  |
| Guard Stand | material |  | 600 |  |
| Magnetic Control Access barrier, Automatic Vehicular Barriers to be installed on ground with magnetic access | material |  | 2400 |  |
| Supply and install Hand Wash Basin with Water Tap, angle valve, P-trap connected to 50mm diameter s | material |  | 216 |  |
| Supply and install paper towel dispenser, surface mounted, satin finish stainless steel as per approv | material |  | 12 |  |
| Supply and install mirror, size 460*910mm as per approved sample including frames, backing and all accessories to complete. | material |  | 96 |  |
| Supply and install towel ring , surface mounted, satin finish stainless steel as per approved sample including accessories. | material |  | 12 |  |
| Kitchen sink with single bowl with hot/cold water mixer. | material |  | 168 |  |
| Supply and install Base mounted flush tank water Western water closet system with lid connected to 110mm soil pipe | material |  | 384 |  |
| Gate Valves | material |  | 84 |  |
| Slow Closing Valve | material |  | 84 |  |
| 1 meter length 10mm diameter Flexible Hose with insulated handle complete with fork support, index push, vacuum breaker | material |  | 7.2 |  |
| 50mm diameter | material |  | 7.2 |  |
| 75mm diameter | material |  | 9.6 |  |
| 80mm diameter | material |  | 10.8 |  |
| 100mm diameter | material |  | 11.4 |  |
| 110mm diameter | material |  | 12 |  |
| 13mm diameter | material |  | 2.4 |  |
| 15mm diameter | material |  | 3 |  |
| 20mm diameter | material |  | 3.6 |  |
| 25mm diameter | material |  | 4.8 |  |
| 32mm diameter | material |  | 6 |  |
| 40mm diameter | material |  | 7.2 |  |
| 50mm diameter | material |  | 7.8 |  |
| 13mm diameter | material |  | 3 |  |
| 20mm diameter | material |  | 3.6 |  |
| 25mm diameter | material |  | 4.2 |  |
| Isolation Valve Size 20 | material |  | 12 |  |
| Isolation Valve Size 25 | material |  | 14.4 |  |
| Isolation Valve Size 32 | material |  | 18 |  |
| Isolation Valve Size 40 | material |  | 18.6 |  |
| Isolation Valve Size 50 | material |  | 19.2 |  |
| 20 mm diameter spray head for cold water supply | material |  | 9 |  |
| Supply and install Electric Water Heater set with connection | material |  | 120 |  |
| Water meter complete with accessories. | material |  | 300 |  |
| Roof drain | material |  | 30 |  |
| Vent on a roof to exhaust air | material |  | 30 |  |
| Floor drain 100x80mm | material |  | 30 |  |
| Gully trap 300x300 mm | material |  | 360 |  |
| inspection chamber, size 800x900x1000 | material |  | 360 |  |
| Mini split actual capacity 2 Ton | material |  | 420 |  |
| Ducted split actual capacity 4 Ton | material |  | 720 |  |
| Supply, fabricate, install and testing factory fabricated metal ducts with flanges complete with supports, vanes, | material |  | 2.4 |  |
| Supplying, installation testing & commissioning of external insulation on ducts | material |  | 12 |  |
| Supply, fix, testing and commissioning of exhaust air/fresh air louvers of powder coated extruded aluminium construction. | material |  | 60 |  |
| Providing, fixing, testing and commissioning of powder coated extruded aluminum sections grills and diffusers with dampers. | material |  | 60 |  |
| Air Grills 150mm x150mm | material |  | 30 |  |
| Air Diffuser 600mm x 600mm | material |  | 42 |  |
| Supply, Installation & Testing of 2 hours Fire rated system for closing the openings between roo | material |  | 3000 |  |
| 4.5 KG CO2 Type Fire Extinguishers | material |  | 300 |  |
| 6 KG ABC Type Fire Extinguishers | material |  | 420 |  |
| Floor cleanout, size 75 mm diameter | material |  | 12 |  |
| Floor cleanout, size 110 mm diameter | material |  | 24 |  |
| GRP water tanks capacity of each 1000 liter complete with all fittings, all valves and concrete pad | material |  | 840 |  |
| Junction Box for lighting fixture | material |  | 12.3 |  |
| Trench excavation to receive 2 nos 50mm diameter PVC Conduit, sand bedding and embedded with sa | material |  | 5.6 |  |
| Supply, Install, fixings, testing and commissioning 80W LED Projector waterproof DJ effect light including c | material |  | 135.9 |  |
| Earth Pit | material |  | 19.2 |  |
| Grounding rod 20mmX3m | material |  | 19.1 |  |
| Grounding rod with Pit 20mmX3m | material |  | 38 |  |
| Earthing Bar | material |  | 99.8 |  |
| 120mm2 Tinned copper wire | material |  | 9.6 |  |
| Guard Room 1 | material |  | 396.8 |  |
| Guard Room 2 | material |  | 396.8 |  |
| Guard Room 3 | material |  | 396.8 |  |
| 30A, 2P AC Disconnect Switch | material |  | 67.5 |  |
| 20A Duplex Receptacle Floor Mounted | material |  | 68.4 |  |
| Twin Socket outlet | material |  | 29.7 |  |
| Twin Socket outlet, Weather Proof | material |  | 49.7 |  |
| Single gang Lighting switch | material |  | 25.2 |  |
| 2way Single gang Lighting switch | material |  | 30 |  |
| 36W LED linear Pendant lighting | material |  | 71.7 |  |
| 36W LED Emergency linear Pendant lighting | material |  | 98.8 |  |
| 13W recess mounted LED down light fitting | material |  | 38.8 |  |
| 13W recess emergency mounted LED down light fitting with 1.5 Hr Battery | material |  | 83.4 |  |
| 10.4W LED Exit light with 1.5 Hr Battery | material |  | 63 |  |
| 4mm2 Cu./FRLSZH Cable | material |  | 1.1 |  |
| 6mm2 Cu./FRLSZH Cable | material |  | 1.2 |  |
| IR Intrusion Detection System Quad Beams (Tx & Rx) (SL-350 QDM) | material |  | 1053.6 |  |
| Control cable | material |  | 1 |  |
| CAT6A cable | material |  | 0.5 |  |
| Field Equipment Cabinet enclosed outdoor complete with precast concrete footing, suitable for parame | material |  | 923.2 |  |
| Supply and install 800mm x 800mm x 800mm height concrete handhole with bituminous paint all aroun | material |  | 256.8 |  |
| 800mm depth minimum Trench excavation to receive 3 nos 50mm diameter PVC Conduit with spacer, sand bedding an | material |  | 6 |  |
| Hot dipped galvanized cable conduits for CAT6A cable and Control Cables embedded to wall | material |  | 9.4 |  |
| 8 Port Industrial PoE Switch 10/100BaseT (0 deg to +70 deg. Celsius) | material |  | 1089 |  |
| 06C Optical Fiber SM | material |  | 1.2 |  |
| 48C Optical Fiber SM | material |  | 3.4 |  |
| 48 Core Splice Closure | material |  | 130.6 |  |
| Boom Barrier at Security Guard Room | material |  | 1585 |  |
| Pedestrian turnstile at Security Guard Room | material |  | 3729.3 |  |
| Access Control Unit | material |  | 466.2 |  |
| Access Card Reader | material |  | 9.4 |  |
| Magnetic Lock | material |  | 93.3 |  |
| Break Glass | material |  | 37.4 |  |
| Exit Push button | material |  | 18.8 |  |
| Door Sensor | material |  | 18.8 |  |
| Biometrics Reader | material |  | 65.3 |  |
| Pole/Bollard mounted IP( PoE), Automatic Number Plate Recognition (ANPR, camera, 5MP,IP 66, IR illumin | material |  | 1856.3 |  |
| 12U rack dimension (W x H x L) 600 x 625 x 600 mm | material |  | 335.7 |  |
| 400V, 3PH, 60Hz lighting control panel (LCP-02) | material |  | 2396.1 |  |
| 38W, 230V, 1PH, 60Hz fence, led linear uplight lighting, IP66 | material |  | 68.4 |  |
| 4C-16mm2 CU/XLPE/PVC direct buried armored cable | material |  | 5.9 |  |
| 4C-10mm2 CU/XLPE/PVC direct buried armored cable | material |  | 5.4 |  |
| 16mm2 CU/PVC wire | material |  | 1.1 |  |
| 10mm2 CU/PVC wire | material |  | 0.9 |  |
| 4C-16mm2 CU/XLPE/PVC direct buried armored cable | material |  | 5.9 |  |
| 16mm2 CU/PVC wire | material |  | 1.1 |  |
| Fire Alarm Control panel with fire alarm zoning with Mimic panel with fire alarm zoning | material |  | 812.4 |  |
| Main Fire Alarm Control panel with fire alarm zoning with Mimic panel with fire alarm zoning | material |  | 812.4 |  |
| Supply and installation of the addressable manual call point with operation safety glass breaking and pushbutton | material |  | 24.6 |  |
| Supply and installation of the photoelectric heat & smoke detector with base | material |  | 36 |  |
| Sounder With Beacon | material |  | 24.6 |  |
| Addressable Control module for Sounders | material |  | 29.7 |  |
| Addressable Control module for HVAC System | material |  | 29.7 |  |
| Addressable Monitor module for HVAC System | material |  | 29.6 |  |
| 2C x 1.5 Sqm FR Rated Armored - Cable For Loop Wiring | material |  | 1.4 |  |
| DACT (Auto - Dailer) for 24x7 Civil Defence | material |  | 180 |  |
| Transmission Communication cable - Fiber Optics 12Core | material |  | 3.8 |  |
| Transmission Communication cable - Ethernet Cable | material |  | 0.6 |  |
| Supply, install to site and installation of power supply system for fire alarm control panel | material |  | 461.7 |  |
| Supply, install to site and installation of power cable | material |  | 1 |  |
| Fire Fighter’s Telephone Centre | material |  | 461.7 |  |
| Fireman’s Telephone Jack | material |  | 554 |  |
| Voice Command Center | material |  | 3.8 |  |
| Smart Card Printer | material |  | 6247.08 |  |
| Card Issue Work Station | material |  | 9995.06 |  |
| Photographic Camera with stand | material |  | 7496.63 |  |
| Interface modules with CCTV, Fire and other systems | material |  | 31733.2 |  |
| Gate valves Dia 50 mm | material |  | 1206 |  |
| Gate valves Dia 100 mm | material |  | 1447.2 |  |
| Gate valves Dia 150 mm | material |  | 1929.6 |  |
| Gate valves Dia 250 mm | material |  | 3376.8 |  |
| Air valves with Dia 50 mm | material |  | 6432 |  |
| Washout valve Dia 100 mm | material |  | 6432 |  |
| Flow meter chamber (1500x 2500 mm) | material |  | 16080 |  |
| Flow meter dia 100 mm | material |  | 20502 |  |
| Supply and installation of KWH meter mounting frame including concrete block for installation of KWH meter | material |  | 1218.06 |  |
| Depth Between 0m to 1.50m | material |  | 2.58 |  |
| Depth Between 1.50m to 2.50m | material |  | 3.18 |  |
| Depth > 2.50m | material |  | 3.78 |  |
| Depth Between 0m to 1.50m | material |  | 3.3 |  |
| Depth Between 0m to 1.50m | material |  | 3.42 |  |
| Depth Between 1.50m to 2.50m | material |  | 4.05 |  |
| Depth > 2.50m | material |  | 4.14 |  |
| Depth Between 0m to 1.50m | material |  | 4.26 |  |
| Depth Between 1.50m to 2.50m | material |  | 4.86 |  |
| Depth > 2.50m | material |  | 5.49 |  |
| Depth Between 0m to 1.50m | material |  | 5.58 |  |
| Depth Between 1.50m to 2.50m | material |  | 6.21 |  |
| Depth > 2.50m | material |  | 6.84 |  |
| Gate valves dia 50 mm | material |  | 54 |  |
| Gate valves dia 100 mm | material |  | 64.8 |  |
| Gate valves dia 150 mm | material |  | 86.4 |  |
| Gate valves dia 200 mm | material |  | 151.2 |  |
| Air valves with dia 50 mm | material |  | 288 |  |
| Washout valve dia 100 mm | material |  | 288 |  |
| Wash out chamber (2500x 2500mm) | material |  | 720 |  |
| Air valve chamber (1000x 1000 mm) | material |  | 468 |  |
| Flow meter chamber (1500x 3000 mm) | material |  | 720 |  |
| Flow meter dia 150 mm | material |  | 1260 |  |
| 100 mm thickness lean concrete under the foundation | material |  | 12.6 |  |
| Foundation | material |  | 27 |  |
| Walls | material |  | 46.8 |  |
| Beams | material |  | 50.4 |  |
| Columns | material |  | 54 |  |
| Common brickwork. 300mm thick; vertical straight wall complete with accessories. | material |  | 4.32 |  |
| Two Layers of Bituminous Coating | material |  | 0.36 |  |
| 20x20 Approved Polysulfide Joint Sealant | material |  | 0.72 |  |
| Supply and install 33mm thick Lexan cladding blue complete with necessary framings | material |  | 12.6 |  |
| Supply and install 50mm thick random cut stone cladding complete with 600m | material |  | 10.08 |  |
| Supply and install External plastering to walls and columns min. 15mm thick with cement mortar of specified grade including | material |  | 1.08 |  |
| Supply and install 2 coats of weatherproof paint at walls including one prime coat and | material |  | 1.26 |  |
| Guard room coping 350mm | material |  | 4.32 |  |
| Guard room coping 450mm | material |  | 5.76 |  |
| Stone coping 500mm | material |  | 6.3 |  |
| Stone coping 525mm | material |  | 6.48 |  |
| Supply and install MODON Signage with Logo Type 1 | material |  | 360 |  |
| Supply and install MODON Signage Type 2 | material |  | 360 |  |
| Supply and install "Triangle Style" signage | material |  | 72 |  |
| Junction Box for lighting fixture | material |  | 3.69 |  |
| Trench excavation to receive 2 nos 50mm diameter PVC Conduit, sand bedding and embedded with sa | material |  | 1.68 |  |
| Supply, Install, fixings, testing and commissioning 80W LED Projector waterproof DJ effect light including c | material |  | 40.77 |  |
| Earth Pit | material |  | 5.76 |  |
| Grounding rod 20mmX3m | material |  | 5.73 |  |
| Grounding rod with Pit 20mmX3m | material |  | 11.4 |  |
| Earthing Bar | material |  | 29.94 |  |
| 120mm2 Tinned copper wire | material |  | 2.88 |  |
| IR Intrusion Detection System Quad Beams (Tx & Rx) (SL-350 QDM) | material |  | 316.08 |  |
| Control cable | material |  | 0.3 |  |
| CAT6A cable | material |  | 0.15 |  |
| Field Equipment Cabinet enclosed outdoor complete with precast concrete footing, suitable for parame | material |  | 276.96 |  |
| Supply and install 800mm x 800mm x 800mm height concrete handhole with bituminous paint all aroun | material |  | 77.04 |  |
| 800mm depth minimum Trench excavation to receive 3 nos 50mm diameter PVC Conduit with spacer, sand bedding an | material |  | 1.8 |  |
| Hot dipped galvanized cable conduits for CAT6A cable and Control Cables embedded to wall | material |  | 2.82 |  |
| 400V, 3PH, 60Hz lighting control panel (LCP-02) | material |  | 718.83 |  |
| 38W, 230V, 1PH, 60Hz fence, led linear uplight lighting, IP66 | material |  | 20.52 |  |
| 4C-16mm2 CU/XLPE/PVC direct buried armored cable | material |  | 1.77 |  |
| 4C-10mm2 CU/XLPE/PVC direct buried armored cable | material |  | 1.62 |  |
| 16mm2 CU/PVC wire | material |  | 0.33 |  |
| 10mm2 CU/PVC wire | material |  | 0.27 |  |
| 4C-16mm2 CU/XLPE/PVC direct buried armored cable | material |  | 1.77 |  |
| 16mm2 CU/PVC wire | material |  | 0.33 |  |
| Slab on Grade | material |  | 23.4 |  |
| Slabs | material |  | 39.6 |  |
| Lightweight Concrete Roof insulation as per Architect's specification | material |  | 1.62 |  |
| Insulated brickwork. with expanded polystyrene 200mm thick; vertical straight wall complete with accessories . | material |  | 3.96 |  |
| Common brickwork. 150mm thick; vertical straight wall complete with accessories. | material |  | 3.24 |  |
| 2 perpendicular layers of cold bitumen coats | material |  | 0.36 |  |
| 2 layer of 4mm HDPE membrane, 2 perpendicular layers cold bitumen coats | material |  | 1.8 |  |
| 1 layer EPOXY Paint 300 micron | material |  | 2.16 |  |
| Membrane fully bonded to prime deck and upstand | material |  | 1.62 |  |
| Geotextile Filter membrane uv resistance | material |  | 0.18 |  |
| 85mm thick thermal insulation | material |  | 1.08 |  |
| 1.5mm thick epdm waterproofing membrane | material |  | 0.72 |  |
| CW01 - 4500 mm width x 3700 mm height | material |  | 509.49 |  |
| CW02 - 4500 mm width x 3700 mm height | material |  | 509.52 |  |
| CW03 - 4500 mm width x 3700 mm height | material |  | 509.52 |  |
| CW04 - 4500 mm width x 3700 mm height | material |  | 509.52 |  |
| CW05 - 7500 mm width x 4250 mm height | material |  | 975.39 |  |
| CW06 - 7500 mm width x 4250 mm height | material |  | 975.39 |  |
| W01 - 1000 mm width x 2000 mm height | material |  | 61.2 |  |
| W02 - 2000 mm width x 2000 mm height | material |  | 122.4 |  |
| W03 - 2000 mm width x 1000 mm height | material |  | 61.2 |  |
| D2 - 900 mm x 2200 mm height temper door | material |  | 71.28 |  |
| D3 - 950 mm x 2000 mm height temper door | material |  | 68.4 |  |
| Supply and install 300*300mm terrazzo tiles with 150mm high skirting at perimeter with approv | material |  | 2.52 |  |
| Supply and install 300*300mm glazed ceramic wall tiles on cement mortar and including rough | material |  | 3.24 |  |
| Supply and install internal plastering and 2 coats of acrylic paint at walls includin | material |  | 1.08 |  |
| Supply and install 300*300mm glazed ceramic wall tiles on cement mortar and including rough and smooth p | material |  | 2.88 |  |
| Supply and install 600*600mm porcelain tiles with approved quality on 30 mm mortar inclu | material |  | 2.88 |  |
| Supply and install 12.5mm thk, gypsum board suspended ceiling including s | material |  | 2.88 |  |
| Office Chairs | material |  | 28.8 |  |
| Office Tables | material |  | 43.2 |  |
| Guard Stand | material |  | 180 |  |
| Magnetic Control Access barrier, Automatic Vehicular Barriers to be installed on ground with magnetic access | material |  | 720 |  |
| Supply and install Hand Wash Basin with Water Tap, angle valve, P-trap connected to 50mm diameter s | material |  | 64.8 |  |
| Supply and install paper towel dispenser, surface mounted, satin finish stainless steel as per approv | material |  | 3.6 |  |
| Supply and install mirror, size 460*910mm as per approved sample including frames, backing and all accessories to complete. | material |  | 28.8 |  |
| Supply and install towel ring , surface mounted, satin finish stainless steel as per approved sample including accessories. | material |  | 3.6 |  |
| Kitchen sink with single bowl with hot/cold water mixer. | material |  | 50.4 |  |
| Supply and install Base mounted flush tank water Western water closet system with lid connected to 110mm soil pipe | material |  | 115.2 |  |
| Gate Valves | material |  | 25.2 |  |
| Slow Closing Valve | material |  | 25.2 |  |
| 1 meter length 10mm diameter Flexible Hose with insulated handle complete with fork support, index push, vacuum breaker | material |  | 2.16 |  |
| 50mm diameter | material |  | 2.16 |  |
| 75mm diameter | material |  | 2.88 |  |
| 80mm diameter | material |  | 3.24 |  |
| 100mm diameter | material |  | 3.42 |  |
| 110mm diameter | material |  | 3.6 |  |
| 13mm diameter | material |  | 0.72 |  |
| 15mm diameter | material |  | 0.9 |  |
| 20mm diameter | material |  | 1.08 |  |
| 25mm diameter | material |  | 1.44 |  |
| 32mm diameter | material |  | 1.8 |  |
| 40mm diameter | material |  | 2.16 |  |
| 50mm diameter | material |  | 2.34 |  |
| 13mm diameter | material |  | 0.9 |  |
| 20mm diameter | material |  | 1.08 |  |
| 25mm diameter | material |  | 1.26 |  |
| Isolation Valve Size 20 | material |  | 3.6 |  |
| Isolation Valve Size 25 | material |  | 4.32 |  |
| Isolation Valve Size 32 | material |  | 5.4 |  |
| Isolation Valve Size 40 | material |  | 5.58 |  |
| Isolation Valve Size 50 | material |  | 5.76 |  |
| 20 mm diameter spray head for cold water supply | material |  | 2.7 |  |
| Supply and install Electric Water Heater set with connection | material |  | 36 |  |
| Water meter complete with accessories. | material |  | 90 |  |
| Roof drain | material |  | 9 |  |
| Vent on a roof to exhaust air | material |  | 9 |  |
| Floor drain 100x80mm | material |  | 9 |  |
| Gully trap 300x300 mm | material |  | 108 |  |
| inspection chamber, size 800x900x1000 | material |  | 108 |  |
| Mini split actual capacity 2 Ton | material |  | 126 |  |
| Ducted split actual capacity 4 Ton | material |  | 216 |  |
| Supply, fabricate, install and testing factory fabricated metal ducts with flanges complete with supports, vanes, | material |  | 0.72 |  |
| Supplying, installation testing & commissioning of external insulation on ducts | material |  | 3.6 |  |
| Supply, fix, testing and commissioning of exhaust air/fresh air louvers of powder coated extruded aluminium construction. | material |  | 18 |  |
| Providing, fixing, testing and commissioning of powder coated extruded aluminum sections grills and diffusers with dampers. | material |  | 18 |  |
| Air Grills 150mm x150mm | material |  | 9 |  |
| Air Diffuser 600mm x 600mm | material |  | 12.6 |  |
| Supply, Installation & Testing of 2 hours Fire rated system for closing the openings between roo | material |  | 900 |  |
| 4.5 KG CO2 Type Fire Extinguishers | material |  | 90 |  |
| 6 KG ABC Type Fire Extinguishers | material |  | 126 |  |
| Floor cleanout, size 75 mm diameter | material |  | 3.6 |  |
| Floor cleanout, size 110 mm diameter | material |  | 7.2 |  |
| GRP water tanks capacity of each 1000 liter complete with all fittings, all valves and concrete pad | material |  | 252 |  |
| Guard Room 1 | material |  | 119.04 |  |
| Guard Room 2 | material |  | 119.04 |  |
| Guard Room 3 | material |  | 119.04 |  |
| 30A, 2P AC Disconnect Switch | material |  | 20.25 |  |
| 20A Duplex Receptacle Floor Mounted | material |  | 20.52 |  |
| Twin Socket outlet | material |  | 8.91 |  |
| Twin Socket outlet, Weather Proof | material |  | 14.91 |  |
| Single gang Lighting switch | material |  | 7.56 |  |
| 2way Single gang Lighting switch | material |  | 9 |  |
| 36W LED linear Pendant lighting | material |  | 21.51 |  |
| 36W LED Emergency linear Pendant lighting | material |  | 29.64 |  |
| 13W recess mounted LED down light fitting | material |  | 11.64 |  |
| 13W recess emergency mounted LED down light fitting with 1.5 Hr Battery | material |  | 25.02 |  |
| 10.4W LED Exit light with 1.5 Hr Battery | material |  | 18.9 |  |
| 4mm2 Cu./FRLSZH Cable | material |  | 0.33 |  |
| 6mm2 Cu./FRLSZH Cable | material |  | 0.36 |  |
| 8 Port Industrial PoE Switch 10/100BaseT (0 deg to +70 deg. Celsius) | material |  | 326.7 |  |
| 06C Optical Fiber SM | material |  | 0.36 |  |
| 48C Optical Fiber SM | material |  | 1.02 |  |
| 48 Core Splice Closure | material |  | 39.18 |  |
| Boom Barrier at Security Guard Room | material |  | 475.5 |  |
| Pedestrian turnstile at Security Guard Room | material |  | 1118.79 |  |
| Access Control Unit | material |  | 139.86 |  |
| Access Card Reader | material |  | 2.82 |  |
| Magnetic Lock | material |  | 27.99 |  |
| Break Glass | material |  | 11.22 |  |
| Exit Push button | material |  | 5.64 |  |
| Door Sensor | material |  | 5.64 |  |
| Biometrics Reader | material |  | 19.59 |  |
| Pole/Bollard mounted IP( PoE), Automatic Number Plate Recognition (ANPR, camera, 5MP,IP 66, IR illumin | material |  | 556.89 |  |
| 12U rack dimension (W x H x L) 600 x 625 x 600 mm | material |  | 100.71 |  |
| Fire Alarm Control panel with fire alarm zoning with Mimic panel with fire alarm zoning | material |  | 243.72 |  |
| Main Fire Alarm Control panel with fire alarm zoning with Mimic panel with fire alarm zoning | material |  | 243.72 |  |
| Supply and installation of the addressable manual call point with operation safety glass breaking and pushbutton | material |  | 7.38 |  |
| Supply and installation of the photoelectric heat & smoke detector with base | material |  | 10.8 |  |
| Sounder With Beacon | material |  | 7.38 |  |
| Addressable Control module for Sounders | material |  | 8.91 |  |
| Addressable Control module for HVAC System | material |  | 8.91 |  |
| Addressable Monitor module for HVAC System | material |  | 8.88 |  |
| 2C x 1.5 Sqm FR Rated Armored - Cable For Loop Wiring | material |  | 0.42 |  |
| DACT (Auto - Dailer) for 24x7 Civil Defence | material |  | 54 |  |
| Transmission Communication cable - Fiber Optics 12Core | material |  | 1.14 |  |
| Transmission Communication cable - Ethernet Cable | material |  | 0.18 |  |
| Supply, install to site and installation of power supply system for fire alarm control panel | material |  | 138.51 |  |
| Supply, install to site and installation of power cable | material |  | 0.3 |  |
| Fire Fighter’s Telephone Centre | material |  | 138.51 |  |
| Fireman’s Telephone Jack | material |  | 166.2 |  |
| Voice Command Center | material |  | 1.14 |  |
| Glass Fused Bolted (GLS) 1500 m3 Tank with associated accessories & manufacturer recommendation for the foundation | material |  | 18452.8 |  |
| Glass Fused Bolted (GLS) 1500 m3 Tank with associated accessories & manufacturer recommendation for the foundation | material |  | 123019 |  |
| Glass Fused Bolted (GLS) 1500 m3 Tank with associated accessories & manufacturer recommendation for the foundation | material |  | 123019 |  |
| Slab on Grade | material |  | 156 |  |
| Slabs | material |  | 264 |  |
| Lightweight Concrete Roof insulation as per Architect's specification | material |  | 10.8 |  |
| Insulated brickwork. with expanded polystyrene 200mm thick; vertical straight wall complete with accessories . | material |  | 26.4 |  |
| Common brickwork. 150mm thick; vertical straight wall complete with accessories. | material |  | 21.6 |  |
| 2 perpendicular layers of cold bitumen coats | material |  | 2.4 |  |
| 2 layer of 4mm HDPE membrane, 2 perpendicular layers cold bitumen coats | material |  | 12 |  |
| 1 layer EPOXY Paint 300 micron | material |  | 14.4 |  |
| Membrane fully bonded to prime deck and upstand | material |  | 10.8 |  |
| Geotextile Filter membrane uv resistance | material |  | 1.2 |  |
| 85mm thick thermal insulation | material |  | 7.2 |  |
| 1.5mm thick epdm waterproofing membrane | material |  | 4.8 |  |
| CW01 - 4500 mm width x 3700 mm height | material |  | 3396.6 |  |
| CW02 - 4500 mm width x 3700 mm height | material |  | 3396.8 |  |
| CW03 - 4500 mm width x 3700 mm height | material |  | 3396.8 |  |
| CW04 - 4500 mm width x 3700 mm height | material |  | 3396.8 |  |
| CW05 - 7500 mm width x 4250 mm height | material |  | 6502.6 |  |
| CW06 - 7500 mm width x 4250 mm height | material |  | 6502.6 |  |
| W01 - 1000 mm width x 2000 mm height | material |  | 408 |  |
| W02 - 2000 mm width x 2000 mm height | material |  | 816 |  |
| W03 - 2000 mm width x 1000 mm height | material |  | 408 |  |
| D2 - 900 mm x 2200 mm height temper door | material |  | 475.2 |  |
| D3 - 950 mm x 2000 mm height temper door | material |  | 456 |  |
| Supply and install 300*300mm terrazzo tiles with 150mm high skirting at perimeter with approv | material |  | 16.8 |  |
| Supply and install 300*300mm glazed ceramic wall tiles on cement mortar and including rough | material |  | 21.6 |  |
| Supply and install internal plastering and 2 coats of acrylic paint at walls includin | material |  | 7.2 |  |
| Supply and install 300*300mm glazed ceramic wall tiles on cement mortar and including rough and smooth p | material |  | 19.2 |  |
| Supply and install 600*600mm porcelain tiles with approved quality on 30 mm mortar inclu | material |  | 19.2 |  |
| Supply and install 12.5mm thk, gypsum board suspended ceiling including s | material |  | 19.2 |  |
| Office Chairs | material |  | 192 |  |
| Office Tables | material |  | 288 |  |
| Guard Stand | material |  | 1200 |  |
| Magnetic Control Access barrier, Automatic Vehicular Barriers to be installed on ground with magnetic access | material |  | 4800 |  |
| Supply and install Hand Wash Basin with Water Tap, angle valve, P-trap connected to 50mm diameter s | material |  | 432 |  |
| Supply and install paper towel dispenser, surface mounted, satin finish stainless steel as per approv | material |  | 24 |  |
| Supply and install mirror, size 460*910mm as per approved sample including frames, backing and all accessories to complete. | material |  | 192 |  |
| Supply and install towel ring , surface mounted, satin finish stainless steel as per approved sample including accessories. | material |  | 24 |  |
| Kitchen sink with single bowl with hot/cold water mixer. | material |  | 336 |  |
| Supply and install Base mounted flush tank water Western water closet system with lid connected to 110mm soil pipe | material |  | 768 |  |
| Gate Valves | material |  | 168 |  |
| Slow Closing Valve | material |  | 168 |  |
| 1 meter length 10mm diameter Flexible Hose with insulated handle complete with fork support, index push, vacuum breaker | material |  | 14.4 |  |
| 50mm diameter | material |  | 14.4 |  |
| 75mm diameter | material |  | 19.2 |  |
| 80mm diameter | material |  | 21.6 |  |
| 100mm diameter | material |  | 22.8 |  |
| 110mm diameter | material |  | 24 |  |
| 13mm diameter | material |  | 4.8 |  |
| 15mm diameter | material |  | 6 |  |
| 20mm diameter | material |  | 7.2 |  |
| 25mm diameter | material |  | 9.6 |  |
| 32mm diameter | material |  | 12 |  |
| 40mm diameter | material |  | 14.4 |  |
| 50mm diameter | material |  | 15.6 |  |
| 13mm diameter | material |  | 6 |  |
| 20mm diameter | material |  | 7.2 |  |
| 25mm diameter | material |  | 8.4 |  |
| Isolation Valve Size 20 | material |  | 24 |  |
| Isolation Valve Size 25 | material |  | 28.8 |  |
| Isolation Valve Size 32 | material |  | 36 |  |
| Isolation Valve Size 40 | material |  | 37.2 |  |
| Isolation Valve Size 50 | material |  | 38.4 |  |
| 20 mm diameter spray head for cold water supply | material |  | 18 |  |
| Supply and install Electric Water Heater set with connection | material |  | 240 |  |
| Water meter complete with accessories. | material |  | 600 |  |
| Roof drain | material |  | 60 |  |
| Vent on a roof to exhaust air | material |  | 60 |  |
| Floor drain 100x80mm | material |  | 60 |  |
| Gully trap 300x300 mm | material |  | 720 |  |
| inspection chamber, size 800x900x1000 | material |  | 720 |  |
| Mini split actual capacity 2 Ton | material |  | 840 |  |
| Ducted split actual capacity 4 Ton | material |  | 1440 |  |
| Supply, fabricate, install and testing factory fabricated metal ducts with flanges complete with supports, vanes, | material |  | 4.8 |  |
| Supplying, installation testing & commissioning of external insulation on ducts | material |  | 24 |  |
| Supply, fix, testing and commissioning of exhaust air/fresh air louvers of powder coated extruded aluminium construction. | material |  | 120 |  |
| Providing, fixing, testing and commissioning of powder coated extruded aluminum sections grills and diffusers with dampers. | material |  | 120 |  |
| Air Grills 150mm x150mm | material |  | 60 |  |
| Air Diffuser 600mm x 600mm | material |  | 84 |  |
| Supply, Installation & Testing of 2 hours Fire rated system for closing the openings between roo | material |  | 6000 |  |
| 4.5 KG CO2 Type Fire Extinguishers | material |  | 600 |  |
| 6 KG ABC Type Fire Extinguishers | material |  | 840 |  |
| Floor cleanout, size 75 mm diameter | material |  | 24 |  |
| Floor cleanout, size 110 mm diameter | material |  | 48 |  |
| GRP water tanks capacity of each 1000 liter complete with all fittings, all valves and concrete pad | material |  | 1680 |  |
| Guard Room 1 | material |  | 793.6 |  |
| Guard Room 2 | material |  | 793.6 |  |
| Guard Room 3 | material |  | 793.6 |  |
| 30A, 2P AC Disconnect Switch | material |  | 135 |  |
| 20A Duplex Receptacle Floor Mounted | material |  | 136.8 |  |
| Twin Socket outlet | material |  | 59.4 |  |
| Twin Socket outlet, Weather Proof | material |  | 99.4 |  |
| Single gang Lighting switch | material |  | 50.4 |  |
| 2way Single gang Lighting switch | material |  | 60 |  |
| 36W LED linear Pendant lighting | material |  | 143.4 |  |
| 36W LED Emergency linear Pendant lighting | material |  | 197.6 |  |
| 13W recess mounted LED down light fitting | material |  | 77.6 |  |
| 13W recess emergency mounted LED down light fitting with 1.5 Hr Battery | material |  | 166.8 |  |
| 10.4W LED Exit light with 1.5 Hr Battery | material |  | 126 |  |
| 4mm2 Cu./FRLSZH Cable | material |  | 2.2 |  |
| 6mm2 Cu./FRLSZH Cable | material |  | 2.4 |  |
| 8 Port Industrial PoE Switch 10/100BaseT (0 deg to +70 deg. Celsius) | material |  | 2178 |  |
| 06C Optical Fiber SM | material |  | 2.4 |  |
| 48C Optical Fiber SM | material |  | 6.8 |  |
| 48 Core Splice Closure | material |  | 261.2 |  |
| Boom Barrier at Security Guard Room | material |  | 3170 |  |
| Pedestrian turnstile at Security Guard Room | material |  | 7458.6 |  |
| Access Control Unit | material |  | 932.4 |  |
| Access Card Reader | material |  | 18.8 |  |
| Magnetic Lock | material |  | 186.6 |  |
| Break Glass | material |  | 74.8 |  |
| Exit Push button | material |  | 37.6 |  |
| Door Sensor | material |  | 37.6 |  |
| Biometrics Reader | material |  | 130.6 |  |
| Pole/Bollard mounted IP( PoE), Automatic Number Plate Recognition (ANPR, camera, 5MP,IP 66, IR illumin | material |  | 3712.6 |  |
| 12U rack dimension (W x H x L) 600 x 625 x 600 mm | material |  | 671.4 |  |
| Fire Alarm Control panel with fire alarm zoning with Mimic panel with fire alarm zoning | material |  | 1624.8 |  |
| Main Fire Alarm Control panel with fire alarm zoning with Mimic panel with fire alarm zoning | material |  | 1624.8 |  |
| Supply and installation of the addressable manual call point with operation safety glass breaking and pushbutton | material |  | 49.2 |  |
| Supply and installation of the photoelectric heat & smoke detector with base | material |  | 72 |  |
| Sounder With Beacon | material |  | 49.2 |  |
| Addressable Control module for Sounders | material |  | 59.4 |  |
| Addressable Control module for HVAC System | material |  | 59.4 |  |
| Addressable Monitor module for HVAC System | material |  | 59.2 |  |
| 2C x 1.5 Sqm FR Rated Armored - Cable For Loop Wiring | material |  | 2.8 |  |
| DACT (Auto - Dailer) for 24x7 Civil Defence | material |  | 360 |  |
| Transmission Communication cable - Fiber Optics 12Core | material |  | 7.6 |  |
| Transmission Communication cable - Ethernet Cable | material |  | 1.2 |  |
| Supply, install to site and installation of power supply system for fire alarm control panel | material |  | 923.4 |  |
| Supply, install to site and installation of power cable | material |  | 2 |  |
| Fire Fighter’s Telephone Centre | material |  | 923.4 |  |
| Fireman’s Telephone Jack | material |  | 1108 |  |
| Voice Command Center | material |  | 7.6 |  |
| 100 mm thickness lean concrete under the foundation | material |  | 84 |  |
| Foundation | material |  | 180 |  |
| Walls | material |  | 312 |  |
| Beams | material |  | 336 |  |
| Columns | material |  | 360 |  |
| Common brickwork. 300mm thick; vertical straight wall complete with accessories. | material |  | 28.8 |  |
| Two Layers of Bituminous Coating | material |  | 2.4 |  |
| 20x20 Approved Polysulfide Joint Sealant | material |  | 4.8 |  |
| Supply and install 33mm thick Lexan cladding blue complete with necessary framings | material |  | 84 |  |
| Supply and install 50mm thick random cut stone cladding complete with 600m | material |  | 67.2 |  |
| Supply and install External plastering to walls and columns min. 15mm thick with cement mortar of specified grade including | material |  | 7.2 |  |
| Supply and install 2 coats of weatherproof paint at walls including one prime coat and | material |  | 8.4 |  |
| Guard room coping 350mm | material |  | 28.8 |  |
| Guard room coping 450mm | material |  | 38.4 |  |
| Stone coping 500mm | material |  | 42 |  |
| Stone coping 525mm | material |  | 43.2 |  |
| Supply and install MODON Signage with Logo Type 1 | material |  | 2400 |  |
| Supply and install MODON Signage Type 2 | material |  | 2400 |  |
| Supply and install "Triangle Style" signage | material |  | 480 |  |
| Junction Box for lighting fixture | material |  | 24.6 |  |
| Trench excavation to receive 2 nos 50mm diameter PVC Conduit, sand bedding and embedded with sa | material |  | 11.2 |  |
| Supply, Install, fixings, testing and commissioning 80W LED Projector waterproof DJ effect light including c | material |  | 271.8 |  |
| Earth Pit | material |  | 38.4 |  |
| Grounding rod 20mmX3m | material |  | 38.2 |  |
| Grounding rod with Pit 20mmX3m | material |  | 76 |  |
| Earthing Bar | material |  | 199.6 |  |
| 120mm2 Tinned copper wire | material |  | 19.2 |  |
| IR Intrusion Detection System Quad Beams (Tx & Rx) (SL-350 QDM) | material |  | 2107.2 |  |
| Control cable | material |  | 2 |  |
| CAT6A cable | material |  | 1 |  |
| Field Equipment Cabinet enclosed outdoor complete with precast concrete footing, suitable for parame | material |  | 1846.4 |  |
| Supply and install 800mm x 800mm x 800mm height concrete handhole with bituminous paint all aroun | material |  | 513.6 |  |
| 800mm depth minimum Trench excavation to receive 3 nos 50mm diameter PVC Conduit with spacer, sand bedding an | material |  | 12 |  |
| Hot dipped galvanized cable conduits for CAT6A cable and Control Cables embedded to wall | material |  | 18.8 |  |
| 400V, 3PH, 60Hz lighting control panel (LCP-02) | material |  | 4792.2 |  |
| 38W, 230V, 1PH, 60Hz fence, led linear uplight lighting, IP66 | material |  | 136.8 |  |
| 4C-16mm2 CU/XLPE/PVC direct buried armored cable | material |  | 11.8 |  |
| 4C-10mm2 CU/XLPE/PVC direct buried armored cable | material |  | 10.8 |  |
| 16mm2 CU/PVC wire | material |  | 2.2 |  |
| 10mm2 CU/PVC wire | material |  | 1.8 |  |
| 4C-16mm2 CU/XLPE/PVC direct buried armored cable | material |  | 11.8 |  |
| 16mm2 CU/PVC wire | material |  | 2.2 |  |
| Depth Between 0m to 1.50m | material |  | 17.2 |  |
| Depth Between 1.50m to 2.50m | material |  | 21.2 |  |
| Depth > 2.50m | material |  | 25.2 |  |
| Depth Between 0m to 1.50m | material |  | 22 |  |
| Depth Between 0m to 1.50m | material |  | 22.8 |  |
| Depth Between 1.50m to 2.50m | material |  | 27 |  |
| Depth > 2.50m | material |  | 27.6 |  |
| Depth Between 0m to 1.50m | material |  | 28.4 |  |
| Depth Between 1.50m to 2.50m | material |  | 32.4 |  |
| Depth > 2.50m | material |  | 36.6 |  |
| Depth Between 0m to 1.50m | material |  | 37.2 |  |
| Depth Between 1.50m to 2.50m | material |  | 41.4 |  |
| Depth > 2.50m | material |  | 45.6 |  |
| Gate valves dia 50 mm | material |  | 360 |  |
| Gate valves dia 100 mm | material |  | 432 |  |
| Gate valves dia 150 mm | material |  | 576 |  |
| Gate valves dia 200 mm | material |  | 1008 |  |
| Air valves with dia 50 mm | material |  | 1920 |  |
| Washout valve dia 100 mm | material |  | 1920 |  |
| Wash out chamber (2500x 2500mm) | material |  | 4800 |  |
| Air valve chamber (1000x 1000 mm) | material |  | 3120 |  |
| Flow meter chamber (1500x 3000 mm) | material |  | 4800 |  |
| Flow meter dia 150 mm | material |  | 8400 |  |
| Pressure–compensating bubblers 110 Lit/Hr | material |  | 11.39 |  |
| Depth Between 0m to 1.50m | material |  | 57.62 |  |
| Depth Between 1.50m to 2.50m | material |  | 71.02 |  |
| Depth > 2.50m | material |  | 84.42 |  |
| Depth Between 0m to 1.50m | material |  | 73.7 |  |
| Depth Between 0m to 1.50m | material |  | 76.38 |  |
| Depth Between 1.50m to 2.50m | material |  | 90.45 |  |
| Depth > 2.50m | material |  | 92.46 |  |
| Depth Between 0m to 1.50m | material |  | 95.14 |  |
| Depth Between 1.50m to 2.50m | material |  | 108.54 |  |
| Depth > 2.50m | material |  | 122.61 |  |
| Depth Between 0m to 1.50m | material |  | 124.62 |  |
| Depth Between 1.50m to 2.50m | material |  | 138.69 |  |
| Depth > 2.50m | material |  | 152.76 |  |
| Gate valves dia 50 mm | material |  | 1206 |  |
| Gate valves dia 100 mm | material |  | 1447.2 |  |
| Gate valves dia 150 mm | material |  | 1929.6 |  |
| Gate valves dia 200 mm | material |  | 3376.8 |  |
| Air valves with dia 50 mm | material |  | 6432 |  |
| Washout valve dia 100 mm | material |  | 6432 |  |
| Flow meter dia 150 mm | material |  | 28140 |  |
| Wash out chamber (2500x 2500mm) | material |  | 16080 |  |
| Air valve chamber (1000x 1000 mm) | material |  | 10452 |  |
| Flow meter chamber (1500x 3000 mm) | material |  | 16080 |  |
| 100 mm thickness lean concrete under the foundation | material |  | 281.4 |  |
| Carpenter | labor |  |  | ï»? |
| Steel Fixer | labor |  |  |  |
| Foundation | material |  | 603 |  |
| Slab on Grade | material |  | 522.6 |  |
| Walls | material |  | 1045.2 |  |
| Columns | material |  | 1206 |  |
| Beams | material |  | 1125.6 |  |
| Slabs | material |  | 884.4 |  |
| Lightweight Concrete Roof insulation as per Architect's specification | material |  | 36.18 |  |
| Common brickwork. 300mm thick; vertical straight wall complete with accessories. | material |  | 96.48 |  |
| Insulated brickwork. with expanded polystyrene 200mm thick; vertical straight wall complete with accessories . | material |  | 88.44 |  |
| Common brickwork. 150mm thick; vertical straight wall complete with accessories. | material |  | 72.36 |  |
| 2 perpendicular layers of cold bitumen coats | material |  | 8.04 |  |
| 2 layer of 4mm HDPE membrane, 2 perpendicular layers cold bitumen coats | material |  | 40.2 |  |
| 1 layer EPOXY Paint 300 micron | material |  | 48.24 |  |
| Membrane fully bonded to prime deck and upstand | material |  | 36.18 |  |
| Geotextile Filter membrane uv resistance | material |  | 4.02 |  |
| 85mm thick thermal insulation | material |  | 24.12 |  |
| 1.5mm thick epdm waterproofing membrane | material |  | 16.08 |  |
| CW01 - 4500 mm width x 3700 mm height | material |  | 11378.6 |  |
| CW02 - 4500 mm width x 3700 mm height | material |  | 11379.3 |  |
| CW03 - 4500 mm width x 3700 mm height | material |  | 11379.3 |  |
| CW04 - 4500 mm width x 3700 mm height | material |  | 11379.3 |  |
| CW05 - 7500 mm width x 4250 mm height | material |  | 21783.7 |  |
| CW06 - 7500 mm width x 4250 mm height | material |  | 21783.7 |  |
| W01 - 1000 mm width x 2000 mm height | material |  | 1366.8 |  |
| W02 - 2000 mm width x 2000 mm height | material |  | 2733.6 |  |
| W03 - 2000 mm width x 1000 mm height | material |  | 1366.8 |  |
| D2 - 900 mm x 2200 mm height temper door | material |  | 1591.92 |  |
| D3 - 950 mm x 2000 mm height temper door | material |  | 1527.6 |  |
| Supply and install 300*300mm terrazzo tiles with 150mm high skirting at perimeter with approv | material |  | 56.28 |  |
| Supply and install 300*300mm glazed ceramic wall tiles on cement mortar and including rough | material |  | 72.36 |  |
| Supply and install internal plastering and 2 coats of acrylic paint at walls includin | material |  | 24.12 |  |
| Supply and install 300*300mm glazed ceramic wall tiles on cement mortar and including rough and smooth p | material |  | 64.32 |  |
| Supply and install 600*600mm porcelain tiles with approved quality on 30 mm mortar inclu | material |  | 64.32 |  |
| Supply and install 12.5mm thk, gypsum board suspended ceiling including s | material |  | 64.32 |  |
| Office Chairs | material |  | 643.2 |  |
| Office Tables | material |  | 964.8 |  |
| Guard Stand | material |  | 4020 |  |
| Supply and install Hand Wash Basin with Water Tap, angle valve, P-trap connected to 50mm diameter s | material |  | 1447.2 |  |
| Supply and install paper towel dispenser, surface mounted, satin finish stainless steel as per approv | material |  | 80.4 |  |
| Supply and install mirror, size 460*910mm as per approved sample including frames, backing and all accessories to complete. | material |  | 643.2 |  |
| Supply and install towel ring , surface mounted, satin finish stainless steel as per approved sample including accessories. | material |  | 80.4 |  |
| Kitchen sink with single bowl with hot/cold water mixer. | material |  | 1125.6 |  |
| 50mm diameter | material |  | 48.24 |  |
| 75mm diameter | material |  | 64.32 |  |
| 80mm diameter | material |  | 72.36 |  |
| 100mm diameter | material |  | 76.38 |  |
| 110mm diameter | material |  | 80.4 |  |
| Floor cleanout, size 75 mm diameter | material |  | 80.4 |  |
| Floor cleanout, size 110 mm diameter | material |  | 160.8 |  |
| Supply and install Base mounted flush tank water Western water closet system with lid connected to 110mm soil pipe | material |  | 2572.8 |  |
| Gate Valves | material |  | 562.8 |  |
| Slow Closing Valve | material |  | 562.8 |  |
| 1 meter length 10mm diameter Flexible Hose with insulated handle complete with fork support, index push, vacuum breaker | material |  | 48.24 |  |
| 13mm diameter | material |  | 16.08 |  |
| 15mm diameter | material |  | 20.1 |  |
| 20mm diameter | material |  | 24.12 |  |
| 25mm diameter | material |  | 32.16 |  |
| 32mm diameter | material |  | 40.2 |  |
| 40mm diameter | material |  | 48.24 |  |
| 50mm diameter | material |  | 52.26 |  |
| 13mm diameter | material |  | 20.1 |  |
| 20mm diameter | material |  | 24.12 |  |
| 25mm diameter | material |  | 28.14 |  |
| Isolation Valve Size 20 | material |  | 80.4 |  |
| Isolation Valve Size 25 | material |  | 96.48 |  |
| Isolation Valve Size 32 | material |  | 120.6 |  |
| Isolation Valve Size 40 | material |  | 124.62 |  |
| Isolation Valve Size 50 | material |  | 128.64 |  |
| 20 mm diameter spray head for cold water supply | material |  | 60.3 |  |
| Roof drain | material |  | 201 |  |
| Vent on a roof to exhaust air | material |  | 201 |  |
| Floor drain 100x80mm | material |  | 201 |  |
| Gully trap 300x300 mm | material |  | 2412 |  |
| inspection chamber, size 800x900x1000 | material |  | 2412 |  |
| Supply and install Electric Water Heater set with connection | material |  | 804 |  |
| Water meter complete with accessories. | material |  | 2010 |  |
| Mini split actual capacity 2 Ton | material |  | 2814 |  |
| Ducted split actual capacity 4 Ton | material |  | 4824 |  |
| Supply, fabricate, install and testing factory fabricated metal ducts with flanges complete with supports, vanes, | material |  | 16.08 |  |
| Supplying, installation testing & commissioning of external insulation on ducts | material |  | 80.4 |  |
| Supply, fix, testing and commissioning of exhaust air/fresh air louvers of powder coated extruded aluminium construction. | material |  | 402 |  |
| Providing, fixing, testing and commissioning of powder coated extruded aluminum sections grills and diffusers with dampers. | material |  | 402 |  |
| Air Grills 150mm x150mm | material |  | 201 |  |
| Air Diffuser 600mm x 600mm | material |  | 281.4 |  |
| Supply, Installation & Testing of 2 hours Fire rated system for closing the openings between roo | material |  | 20100 |  |
| 4.5 KG CO2 Type Fire Extinguishers | material |  | 2010 |  |
| 6 KG ABC Type Fire Extinguishers | material |  | 2814 |  |
| GRP water tanks capacity of each 1000 liter complete with all fittings, all valves and concrete pad | material |  | 5628 |  |
| Guard Room 1 | material |  | 2658.56 |  |
| Guard Room 2 | material |  | 2658.56 |  |
| Guard Room 3 | material |  | 2658.56 |  |
| 30A, 2P AC Disconnect Switch | material |  | 452.25 |  |
| 20A Duplex Receptacle Floor Mounted | material |  | 458.28 |  |
| Twin Socket outlet | material |  | 198.99 |  |
| Twin Socket outlet, Weather Proof | material |  | 332.99 |  |
| Single gang Lighting switch | material |  | 168.84 |  |
| 2way Single gang Lighting switch | material |  | 201 |  |
| 36W LED linear Pendant lighting | material |  | 480.39 |  |
| 36W LED Emergency linear Pendant lighting | material |  | 661.96 |  |
| 13W recess mounted LED down light fitting | material |  | 259.96 |  |
| 13W recess emergency mounted LED down light fitting with 1.5 Hr Battery | material |  | 558.78 |  |
| 10.4W LED Exit light with 1.5 Hr Battery | material |  | 422.1 |  |
| 4mm2 Cu./FRLSZH Cable | material |  | 7.37 |  |
| 6mm2 Cu./FRLSZH Cable | material |  | 8.04 |  |
| Fire Alarm Control panel with fire alarm zoning with Mimic panel with fire alarm zoning | material |  | 5443.08 |  |
| Main Fire Alarm Control panel with fire alarm zoning with Mimic panel with fire alarm zoning | material |  | 5443.08 |  |
| Supply and installation of the addressable manual call point with operation safety glass breaking and pushbutton | material |  | 164.82 |  |
| Supply and installation of the photoelectric heat & smoke detector with base | material |  | 241.2 |  |
| Sounder With Beacon | material |  | 164.82 |  |
| Addressable Control module for Sounders | material |  | 198.99 |  |
| Addressable Control module for HVAC System | material |  | 198.99 |  |
| Addressable Monitor module for HVAC System | material |  | 198.32 |  |
| 2C x 1.5 Sqm FR Rated Armored - Cable For Loop Wiring | material |  | 9.38 |  |
| DACT (Auto - Dailer) for 24x7 Civil Defence | material |  | 1206 |  |
| Transmission Communication cable - Fiber Optics 12Core | material |  | 25.46 |  |
| Transmission Communication cable - Ethernet Cable | material |  | 4.02 |  |
| Supply, install to site and installation of power cable | material |  | 6.7 |  |
| Fire Fighter’s Telephone Centre | material |  | 3093.39 |  |
| Fireman’s Telephone Jack | material |  | 3711.8 |  |
| Voice Command Center | material |  | 25.46 |  |
| Supply, install to site and installation of power supply system for fire alarm control panel | material |  | 3093.39 |  |
| Two Layers of Bituminous Coating | material |  | 8.04 |  |
| 20x20 Approved Polysulfide Joint Sealant | material |  | 16.08 |  |
| Supply and install 33mm thick Lexan cladding blue complete with necessary framings | material |  | 281.4 |  |
| Supply and install 50mm thick random cut stone cladding complete with 600m | material |  | 225.12 |  |
| Supply and install External plastering to walls and columns min. 15mm thick with cement mortar of specified grade including | material |  | 24.12 |  |
| Supply and install 2 coats of weatherproof paint at walls including one prime coat and | material |  | 28.14 |  |
| Guard room coping 350mm | material |  | 96.48 |  |
| Guard room coping 450mm | material |  | 128.64 |  |
| Stone coping 500mm | material |  | 140.7 |  |
| Stone coping 525mm | material |  | 144.72 |  |
| Supply and install MODON Signage with Logo Type 1 | material |  | 8040 |  |
| Supply and install MODON Signage Type 2 | material |  | 8040 |  |
| Supply and install "Triangle Style" signage | material |  | 1608 |  |
| Junction Box for lighting fixture | material |  | 82.41 |  |
| Trench excavation to receive 2 nos 50mm diameter PVC Conduit, sand bedding and embedded with sa | material |  | 37.52 |  |
| Supply, Install, fixings, testing and commissioning 80W LED Projector waterproof DJ effect light including c | material |  | 910.53 |  |
| Earth Pit | material |  | 128.64 |  |
| Grounding rod 20mmX3m | material |  | 127.97 |  |
| Grounding rod with Pit 20mmX3m | material |  | 254.6 |  |
| Earthing Bar | material |  | 668.66 |  |
| 120mm2 Tinned copper wire | material |  | 64.32 |  |
| IR Intrusion Detection System Quad Beams (Tx & Rx) (SL-350 QDM) | material |  | 7059.12 |  |
| Control cable | material |  | 6.7 |  |
| CAT6A cable | material |  | 3.35 |  |
| Supply and install 800mm x 800mm x 800mm height concrete handhole with bituminous paint all aroun | material |  | 1720.56 |  |
| 800mm depth minimum Trench excavation to receive 3 nos 50mm diameter PVC Conduit with spacer, sand bedding an | material |  | 40.2 |  |
| Hot dipped galvanized cable conduits for CAT6A cable and Control Cables embedded to wall | material |  | 62.98 |  |
| 400V, 3PH, 60Hz lighting control panel (LCP-02) | material |  | 16053.9 |  |
| Field Equipment Cabinet enclosed outdoor complete with precast concrete footing, suitable for parame | material |  | 6185.44 |  |
| 8 Port Industrial PoE Switch 10/100BaseT (0 deg to +70 deg. Celsius) | material |  | 7296.3 |  |
| 06C Optical Fiber SM | material |  | 8.04 |  |
| 48C Optical Fiber SM | material |  | 22.78 |  |
| 48 Core Splice Closure | material |  | 875.02 |  |
| Magnetic Control Access barrier, Automatic Vehicular Barriers to be installed on ground with magnetic access | material |  | 16080 |  |
| Boom Barrier at Security Guard Room | material |  | 10619.5 |  |
| Pedestrian turnstile at Security Guard Room | material |  | 24986.3 |  |
| Access Control Unit | material |  | 3123.54 |  |
| Access Card Reader | material |  | 62.98 |  |
| Magnetic Lock | material |  | 625.11 |  |
| Break Glass | material |  | 250.58 |  |
| Exit Push button | material |  | 125.96 |  |
| Door Sensor | material |  | 125.96 |  |
| Biometrics Reader | material |  | 437.51 |  |
| Pole/Bollard mounted IP( PoE), Automatic Number Plate Recognition (ANPR, camera, 5MP,IP 66, IR illumin | material |  | 12437.2 |  |
| 12U rack dimension (W x H x L) 600 x 625 x 600 mm | material |  | 2249.19 |  |
| 4C-16mm2 CU/XLPE/PVC direct buried armored cable | material |  | 39.53 |  |
| 4C-10mm2 CU/XLPE/PVC direct buried armored cable | material |  | 36.18 |  |
| 16mm2 CU/PVC wire | material |  | 7.37 |  |
| 10mm2 CU/PVC wire | material |  | 6.03 |  |
| 38W, 230V, 1PH, 60Hz fence, led linear uplight lighting, IP66 | material |  | 458.28 |  |
| 4C-16mm2 CU/XLPE/PVC direct buried armored cable | material |  | 39.53 |  |
| 16mm2 CU/PVC wire | material |  | 7.37 |  |
| Depth Between 0m to 1.50m | material |  | 8.6 |  |
| Depth Between 1.50m to 2.50m | material |  | 10.6 |  |
| Depth > 2.50m | material |  | 12.6 |  |
| Depth Between 0m to 1.50m | material |  | 11 |  |
| Depth Between 0m to 1.50m | material |  | 11.4 |  |
| Depth Between 1.50m to 2.50m | material |  | 13.5 |  |
| Depth > 2.50m | material |  | 13.8 |  |
| Depth Between 0m to 1.50m | material |  | 14.2 |  |
| Depth Between 1.50m to 2.50m | material |  | 16.2 |  |
| Depth > 2.50m | material |  | 18.3 |  |
| Depth Between 0m to 1.50m | material |  | 18.6 |  |
| Depth Between 1.50m to 2.50m | material |  | 20.7 |  |
| Depth > 2.50m | material |  | 22.8 |  |
| Gate valves dia 50 mm | material |  | 180 |  |
| Gate valves dia 100 mm | material |  | 216 |  |
| Gate valves dia 150 mm | material |  | 288 |  |
| Gate valves dia 200 mm | material |  | 504 |  |
| Air valves with dia 50 mm | material |  | 960 |  |
| Washout valve dia 100 mm | material |  | 960 |  |
| Wash out chamber (2500x 2500mm) | material |  | 2400 |  |
| Air valve chamber (1000x 1000 mm) | material |  | 1560 |  |
| Flow meter chamber (1500x 3000 mm) | material |  | 2400 |  |
| Flow meter dia 150 mm | material |  | 4200 |  |
| Glass Fused Bolted (GLS) 1500 m3 Tank with associated accessories & manufacturer recommendation for the foundation | material |  | 61509.4 |  |
| Glass Fused Bolted (GLS) 1500 m3 Tank with associated accessories & manufacturer recommendation for the foundation | material |  | 412113 |  |
| Glass Fused Bolted (GLS) 1500 m3 Tank with associated accessories & manufacturer recommendation for the foundation | material |  | 412113 |  |

## Schedule

| ID | WBS | Activity | Type | Duration | Start | Finish | Predecessors | Complete | Planned start | Planned finish | Total float | Free float | Resources |
| --- | --- | --- | --- | --- | --- | --- | --- | --- | --- | --- | --- | --- | --- |
|  | MS | **Key Milestones** |  |  | 2025-12-23 | 2027-06-20 |  |  |  |  |  |  |  |
|  | CM | **Contractual Milestones** |  |  | 2025-12-23 | 2027-06-20 |  |  |  |  |  |  |  |
| MS-CS-PS |  | Project Commencement Date ( Site Handover ) | milestone | 0d | 2025-12-23 A | 2025-12-23 A |  | 100% |  |  |  |  |  |
| MS-CF-EBL |  | Completion of Execution Plan and Baseline Schedule | milestone | 0d | 2026-01-18 A | 2026-01-18 A | PRE-CON-MDC-20 FF, PRE-CON-MDC-10 FF, PRE-CON-MDC-20 | 100% | 2026-06-23 | 2026-06-23 |  |  |  |
| MS-CF-MOB |  | Completion of Mobilization and Site Preperation Works | milestone | 0d | 2026-01-18 A | 2026-01-18 A | MOB-30 FF, MOB-20 FF, MOB-80 FF, MOB-40 FF, MOB-50 FF, MOB-60 FF, MOB-10 FF, MOB-70 FF, PRE-CON-MDC-10 FF, PRE-CON-MDC-20 FF, PRE-CON-MDC-30 FF, PRE-CON-MDC-40 FF, PRE-CON-MDC-50 FF, PRE-CON-MDC-60 FF, PRE-CON-MDC-70 FF, PRE-CON-MDC-80 FF, MOB-30 | 100% | 2026-06-23 | 2026-06-23 |  |  |  |
| MS-CF-ENG |  | Completion of Submitting and Approval of Shopdrwing and Material | milestone | 0d | 2026-10-14 | 2026-10-14 | PRE-CON-MDC-30 FF, PRE-CON-MDC-40 FF, PRE-CON-MDC-50 FF, PRE-CON-MDC-60 FF, PRE-CON-MDC-70 FF, PRE-CON-MDC-80 FF, ENG-SH-RD-A-110 FF, ENG-SH-HS-A-110 FF, ENG-SH-TSB-A-100 FF, ENG-SH-MRK-A-110 FF, ENG-SH-SW-ML-A-110 FF, ENG-SH-SD-ML-A-110 FF, ENG-SH-SD-CB-A-110 FF, ENG-SH-PW-ML-A-110 FF, ENG-SH-PW-FH-A-110 FF, ENG-SH-IR-ML-A-110 FF, ENG-SH-TSE-ML-A-120 FF, ENG-SH-MV-A-110 FF, ENG-SH-LV-A-120 FF, ENG-SH-SL-A-110 FF, ENG-SH-MSN-A-120 FF, ENG-SH-TE-A-110 FF, ENG-SH-CTV-A-110 FF, ENG-SH-SPS-A-160 FF, ENG-SH-LS-A-170 FF, ENG-SH-DPO-A-120 FF, ENG-SH-ST-A-180 FF, ENG-SH-GR-A-190 FF, ENG-SH-GR-A-200_R FF, ENG-MT-RD-A-100 FF, ENG-MT-RD-A-110 FF, ENG-MT-RD-A-120 FF, ENG-MT-RD-A-130 FF, ENG-MT-RD-A-140 FF, ENG-MT-RD-A-150 FF, ENG-MT-TS-A-100 FF, ENG-MT-TS-A-110 FF, ENG-MT-IR-ML-A-140 FF, ENG-MT-IR-ML-A-150 FF, ENG-MT-SW-ML-A-100 FF, ENG-MT-SW-ML-A-110 FF, ENG-MT-SW-TF-A-100 FF, ENG-MT-SD-ML-A-100 FF, ENG-MT-SD-ML-A-110 FF, ENG-MT-SD-CB-A-100 FF, ENG-MT-SD-CB-A-110 FF, ENG-MT-SD-TF-A-100 FF, ENG-MT-SD-TF-A-110 FF, ENG-MT-PW-ML-A-100 FF, ENG-MT-PW-ML-A-110 FF, ENG-MT-PW-FH-A-100 FF, ENG-MT-PW-TF-A-100 FF, ENG-MT-IR-ML-A-100 FF, ENG-MT-IR-ML-A-110 FF, ENG-MT-IR-ML-A-120 FF, ENG-MT-IR-ML-A-130 FF, ENG-MT-MV-ML-A-100 FF, ENG-MT-MV-TF-A-100 FF, ENG-MT-SL-ML-A-100 FF, ENG-MT-SL-A-100 FF, ENG-MT-SL-A-110 FF, ENG-MT-SL-A-120 FF, ENG-MT-SL-DB-A-100 FF, ENG-MT-SL-TF-A-100 FF, ENG-MT-SL-ES-A-100 FF, ENG-MT-TE-A-100 FF, ENG-MT-TE-A-110 FF, ENG-MT-CTV-A-100 FF, ENG-MT-PS-CV-A-150 FF, ENG-MT-SLS-CV-A-110 FF, ENG-MT-DPO-CV-A-110 FF, ENG-MT-TSE-CV-A-140 FF, ENG-MT-GR-CV-A-130 FF, ENG-MT-FE-CV-A-120 FF, ENG-MT-PL-CV-A-160 FF, ENG-MT-CTV-A-110 FF, ENG-MT-SPS-MC-A-110 FF, ENG-MT-TSE-MC-A-120 FF, PRE-CON-MDC-30 |  |  |  | -70d | 2d |  |
| MS-CF-IR |  | Completion of Construction Works for Irrigation Network | milestone | 0d | 2027-04-21 | 2027-04-21 | CO-IR-TF-160 FF, CO-IR-TF-160 |  |  |  | -50.5d | 34.5d |  |
| MS-CF-SW |  | Completion of Construction Works for Sewage Network | milestone | 0d | 2027-04-21 | 2027-04-21 | CO-SW-TF-110 FF, CO-SW-TF-210 FF, CO-SW-TF-110 |  |  |  | -72.5d | 0d |  |
| MS-CF-SD |  | Completion of Construction Works for Storm Drainage Network | milestone | 0d | 2027-04-24 | 2027-04-24 | CO-SD-ML-TF-100 FF, CO-SD-MH-TF-120 FF, CO-SD-CB-TF-160 FF, CO-SD-CB-TF-130 FF, CO-SD-CB-TF-110 FF, CO-SD-PO-110-P2 FF, CO-SD-PO-110-P1 FF, CO-SD-ML-TF-100 |  |  |  | -83.2d | 6d |  |
| MS-CF-MV |  | Completion of Construction Works for Medium Voltage Network | milestone | 0d | 2027-04-29 | 2027-04-29 | CO-MV-TF-220 FF, CO-MV-TF-220 |  |  |  | -76.5d | 12.7d |  |
| MS-CF-TSE |  | Completion of Construction Works for Treated Sewage Effluent Network | milestone | 0d | 2027-05-04 | 2027-05-04 | CO-TSE-TF-170 FF, CO-TSE-TF-170 |  |  |  | -62d | 23d |  |
| MS-CF-TE |  | Completion of Construction Works for Telecom Network | milestone | 0d | 2027-05-09 | 2027-05-09 | CO-TE-CTV-TF-140 FF, CO-TE-CTV-TF-140 |  |  |  | -84.5d | 4.7d |  |
| MS-CF-SL |  | Completion of Construction Works for Street Lighting Network | milestone | 0d | 2027-05-22 | 2027-05-22 | CO-SL-TF-230 FF, CO-SL-TF-220 FF, CO-SL-TF-230 |  |  |  | -77.5d | 5.5d |  |
| MS-CF-PW |  | Completion of Construction Works for Potable Water Network | milestone | 0d | 2027-05-22 | 2027-05-22 | CO-PW-TF-120 FF, CO-UB-IRT-250 FF, CO-PW-TF-100 FF, CO-PW-TF-120 |  |  |  | -72d | 13d |  |
| MS-CF-RD |  | Completion of Construction Works for Road Works | milestone | 0d | 2027-06-07 | 2027-06-07 | CO-RD-F-TS-120 FF, CO-RD-F-TS-110 FF, CO-RD-F-TS-100 FF, CO-RD-F-TS-120 |  |  |  | -79d | 10.2d |  |
| MS-CF-PF |  | Project Completion Date | milestone | 0d | 2027-06-20 | 2027-06-20 | A1100 FF, CO-SD-PO-110-P2 FF, MS-CF-PW FF, MS-CF-IR FF, MS-CF-SW FF, MS-CF-SD FF, MS-CF-TSE FF, MS-CF-MV FF, MS-CF-SL FF, MS-CF-TE FF, MS-CF-RD FF, MS-CF-EBL FF, MS-CF-ENG FF, CO-SU-FE-EP2-EL-870 FF, CO-SU-FE-EP2-AR-450 FF, T/C-CTV FF, HO-130 FF, HO-100 FF, HO-180 FF, HO-190 FF, HO-150 FF, HO-160 FF, HO-170 FF, HO-210 FF, HO-140 FF, HO-230 FF, HO-250 FF, CO-LS-PL-180 FF, T/C-IR FF, T/C-RD FF, T/C-SD FF, T/C-DPO FF, CO-SD-ML-130 FF, CO-SD-MH-220 FF, CO-SD-CB-170 FF, CO-SD-ML-160 FF, CO-SD-MH-260 FF, CO-SD-CB-200 FF, CO-SD-CB-TF-110 FF, CO-SD-CB-TF-130 FF, CO-SD-CB-TF-160 FF, CO-SD-MH-TF-120 FF, CO-SD-MH-TF-210 FF, CO-SD-ML-TF-100 FF, T/C-TSE-10 FF, T/C-TE FF, T/C-MV FF, T/C-SL FF, T/C-SW FF, T/C-PW FF, A1100 |  |  |  | -89.2d | 0d |  |
|  | MOB | **Preliminaries and Mobilization Works** |  |  | 2025-12-23 | 2026-01-26 |  |  |  |  |  |  |  |
|  | MOB | **Mobilization Works** |  |  | 2025-12-23 | 2026-01-26 |  |  |  |  |  |  |  |
| MOB-20 |  | Project Site Layout Plan Approval |  | 6.25d | 2025-12-23 A | 2025-12-29 A | MS-CS-PS SS, MOB-30 SS | 100% | 2025-12-23 | 2025-12-30 |  |  |  |
| MOB-30 |  | Supply & Install of Project Supervision Offices |  | 29d | 2025-12-23 A | 2026-01-26 A | MS-CS-PS SS | 100% | 2025-12-23 | 2026-01-25 |  |  | Unskilled Labor; Excavator; Mobile Crane; Grader; Skilled Labor |
| MOB-80 |  | Construction Site Access Roads |  | 29d | 2025-12-23 A | 2026-01-26 A | MOB-20 SS, MS-CS-PS SS | 100% | 2025-12-23 | 2026-01-25 |  |  | Unskilled Labor [408 h]; Loader [408 h]; Dump Truck [408 h]; Grader [408 h]; Skilled Labor [408 h] |
| MOB-90 |  | Site Surveying Work |  | 30d | 2025-12-23 A | 2026-01-26 A | MS-CS-PS SS | 100% |  |  |  |  | Unskilled Labor [40 h]; Skilled Labor [40 h] |
| MOB-10 |  | Clear and Grub for Offices and Access Roads |  | 23d | 2025-12-31 A | 2026-01-26 A | MOB-60 SS, MS-CS-PS SS | 100% |  |  |  |  |  |
| MOB-40 |  | Construction Project Store |  | 23d | 2025-12-31 A | 2026-01-26 A | MOB-30 SS+7d, MS-CS-PS SS | 100% |  |  |  |  | Unskilled Labor [640 h]; Loader [160 h]; Grader [160 h]; Skilled Labor [160 h] |
| MOB-50 |  | Mobilization of Major Manpower |  | 23.25d | 2025-12-31 A | 2026-01-26 A | MOB-40 SS+10d, MS-CS-PS SS | 100% | 2025-12-31 | 2026-01-27 |  |  |  |
| MOB-60 |  | Mobilization of Major Equipments |  | 23.25d | 2025-12-31 A | 2026-01-26 A | MOB-50 SS, MS-CS-PS SS | 100% | 2025-12-31 | 2026-01-27 |  |  |  |
| MOB-70 |  | Installation Project Sign Board |  | 12.75d | 2026-01-12 A | 2026-01-26 A | MOB-10 SS+10d, MS-CS-PS SS | 100% |  |  |  |  | Unskilled Labor [160 h]; Excavator [80 h]; Skilled Labor [80 h] |

| ID | WBS | Activity | Duration | Start | Finish | Predecessors | Complete | Planned start | Planned finish |
| --- | --- | --- | --- | --- | --- | --- | --- | --- | --- |
|  | 1 | **Project Main Documents From The Contractor** |  | 2025-12-23 | 2026-01-18 |  |  |  |  |
| PRE-CON-MDC-10 |  | Submission Project Execution Plan | 23.25d | 2025-12-23 A | 2026-01-18 A | MS-CS-PS SS | 100% | 2025-12-23 | 2026-01-19 |
| PRE-CON-MDC-20 |  | Submission Project Baseline Schedule | 23.25d | 2025-12-23 A | 2026-01-18 A | MS-CS-PS SS | 100% | 2025-12-23 | 2026-01-19 |
| PRE-CON-MDC-30 |  | Submission Project Health & Safety Plan | 23.25d | 2025-12-23 A | 2026-01-18 A | MS-CS-PS SS | 100% | 2025-12-23 | 2026-01-19 |
| PRE-CON-MDC-40 |  | Submission Project Quality Control Plan | 23.25d | 2025-12-23 A | 2026-01-18 A | MS-CS-PS SS | 100% | 2025-12-23 | 2026-01-19 |
| PRE-CON-MDC-50 |  | Submission Project Surveying Report | 23.25d | 2025-12-23 A | 2026-01-18 A | MS-CS-PS SS, MOB-90 SS, MOB-90 FF | 100% | 2025-12-23 | 2026-01-19 |
| PRE-CON-MDC-60 |  | Submission Project Geotechnical Soil Report | 23.25d | 2025-12-23 A | 2026-01-18 A | MS-CS-PS SS | 100% | 2025-12-23 | 2026-01-19 |
| PRE-CON-MDC-70 |  | Submission Project Environmental Plan | 23.25d | 2025-12-23 A | 2026-01-18 A | MS-CS-PS SS | 100% | 2025-12-23 | 2026-01-19 |
| PRE-CON-MDC-80 |  | Submission Project Organization Chart and Communications Plan | 23.25d | 2025-12-23 A | 2026-01-18 A | MS-CS-PS SS | 100% | 2025-12-23 | 2026-01-19 |
|  | ENG | **Engineering Works** |  | 2026-01-06 | 2026-10-14 |  |  |  |  |
|  | SD | **Shop Drawings** |  | 2026-01-17 | 2026-07-13 |  |  |  |  |
|  | INF | **Infrastructure Networks** |  | 2026-01-17 | 2026-07-13 |  |  |  |  |
|  | RD | **Road Works** |  | 2026-01-17 | 2026-07-13 |  |  |  |  |
|  | 1 | **Road Pavement Works** |  | 2026-01-17 | 2026-07-04 |  |  |  |  |
|  | 1 | **Submittal** |  | 2026-01-17 | 2026-01-19 |  |  |  |  |
| ENG-SH-RD-S-100 |  | Submission Shop Drawings for Plan and Profile of Road Works | 3.25d | 2026-01-17 A | 2026-01-19 A | MS-CS-PS SS+7d | 100% | 2026-01-17 | 2026-01-20 |
| ENG-SH-RD-S-110 |  | Submission Shop Drawings for Roads Typical Sections and Pavement Details | 3.25d | 2026-01-17 A | 2026-01-19 A | MS-CS-PS SS+7d | 100% | 2026-01-17 | 2026-01-20 |
|  | 2 | **Approval** |  | 2026-01-19 | 2026-07-04 |  |  |  |  |
| ENG-SH-RD-A-100 |  | Approval Shop Drawings for Plan and Profile of Road Works | 13.25d | 2026-01-19 A | 2026-02-02 A | ENG-SH-RD-S-100 | 100% | 2026-01-19 | 2026-02-03 |
| ENG-SH-RD-A-110 |  | Approval Shop Drawings for Roads Typical Sections and Pavement Details | 10d | 2026-06-23 A | 2026-07-04 A | ENG-SH-RD-S-110 | 100% |  |  |
|  | 10 | **Pavement Works** |  | 2026-06-23 | 2026-07-01 |  |  |  |  |
|  | 1 | **Submittal** |  | 2026-06-23 | 2026-06-27 |  |  |  |  |
| ENG-SH-HS-S-100 |  | Submission Shop Drawings for Hardscaping (Curbstone& Interlock) Works | 3.5d | 2026-06-23 A | 2026-06-27 A | MS-CS-PS SS, ENG-SH-RD-S-100 SS | 100% |  |  |
|  | 2 | **Approval** |  | 2026-06-27 | 2026-07-01 |  |  |  |  |
| ENG-SH-HS-A-110 |  | Approval Shop Drawings for Hardscaping (Curbstone& Interlock) Works | 4d | 2026-06-27 A | 2026-07-01 A | ENG-SH-HS-S-100 | 100% |  |  |

| ID | WBS | Activity | Duration | Start | Finish | Predecessors | Complete | Planned start | Planned finish |
| --- | --- | --- | --- | --- | --- | --- | --- | --- | --- |
|  | 11 | **Traffic Sign Boards and Road Marking** |  | 2026-06-27 | 2026-07-13 |  |  |  |  |
|  | 1 | **Submittal** |  | 2026-06-27 | 2026-07-12 |  |  |  |  |
| ENG-SH-TSB-S-100 |  | Submission Shop Drawings for Traffic Signs Boards | 6d | 2026-06-27 A | 2026-07-04 A | MS-CS-PS SS, ENG-SH-HS-A-110 SS | 100% |  |  |
| ENG-SH-MRK-S-110 |  | Submission Shop Drawings for Pavement Markings | 6d | 2026-07-05 A | 2026-07-12 A | MS-CS-PS SS, ENG-SH-HS-A-110 SS+7d | 100% |  |  |
|  | 2 | **Approval** |  | 2026-06-27 | 2026-07-13 |  |  |  |  |
| ENG-SH-TSB-A-100 |  | Approval Shop Drawings for Traffic Signs Boards | 7d | 2026-06-27 A | 2026-07-05 A | ENG-SH-TSB-S-100 SS, ENG-SH-TSB-S-100 FF | 100% |  |  |
| ENG-SH-MRK-A-110 |  | Approval Shop Drawings for Pavement Markings | 7d | 2026-07-05 A | 2026-07-13 A | ENG-SH-MRK-S-110 SS, ENG-SH-MRK-S-110 FF | 100% |  |  |
|  | SW | **Sewage Network** |  | 2026-01-17 | 2026-06-30 |  |  |  |  |
|  | 1 | **Main Line Sections** |  | 2026-01-17 | 2026-06-30 |  |  |  |  |
|  | 1 | **Submittal** |  | 2026-01-17 | 2026-01-18 |  |  |  |  |
| ENG-SH-SW-ML-S-100 |  | Submission Shop Drawings for Main Line and Manholes of Sewage Network | 2.25d | 2026-01-17 A | 2026-01-18 A | MS-CS-PS SS, ENG-SH-RD-S-100, ENG-SH-RD-S-110 SS | 100% | 2026-01-17 | 2026-01-19 |
|  | 2 | **Approval** |  | 2026-06-23 | 2026-06-30 |  |  |  |  |
| ENG-SH-SW-ML-A-110 |  | Approval Shop Drawings for Main Line and Manholes of Sewage Network | 7d | 2026-06-23 A | 2026-06-30 A | ENG-SH-SW-ML-S-100 | 100% |  |  |
|  | ST | **Storm Drainage Network** |  | 2026-01-17 | 2026-07-06 |  |  |  |  |
|  | 1 | **Main Line Sections** |  | 2026-01-17 | 2026-05-31 |  |  |  |  |
|  | 1 | **Submittal** |  | 2026-01-17 | 2026-01-18 |  |  |  |  |
| ENG-SH-SD-ML-S-100 |  | Submission Shop Drawings for Main Line and Manholes of Storm Drainage Network | 2.25d | 2026-01-17 A | 2026-01-18 A | MS-CS-PS SS, ENG-SH-SW-ML-S-100 SS | 100% | 2026-01-17 | 2026-01-19 |
|  | 2 | **Approval** |  | 2026-05-16 | 2026-05-31 |  |  |  |  |
| ENG-SH-SD-ML-A-110 |  | Approval Shop Drawings for Main Line and Manholes of Storm Drainage Network | 7d | 2026-05-16 A | 2026-05-31 A | ENG-SH-SD-ML-S-100 | 100% | 2026-06-23 | 2026-06-30 |
|  | 2 | **Catch Basin Sections** |  | 2026-01-17 | 2026-07-06 |  |  |  |  |
|  | 1 | **Submittal** |  | 2026-01-17 | 2026-06-28 |  |  |  |  |
| ENG-SH-SD-CB-S-100 |  | Submission Shop Drawings for Secondary Line and Catch Basin of Storm Drainage Network(Completed) | 115.25d | 2026-01-17 A | 2026-06-15 A | MS-CS-PS SS, ENG-SH-SD-ML-S-100 SS | 100% | 2026-01-17 | 2026-06-16 |
| ENG-SH-SD-CB-S-100_R |  | Submission Shop Drawings for Secondary Line and Catch Basin of Storm Drainage Network(Remaining) | 4.5d | 2026-06-23 A | 2026-06-28 A | MS-CS-PS SS, ENG-SH-SD-ML-S-100 SS, ENG-SH-SD-CB-S-100 | 100% |  |  |
|  | 2 | **Approval** |  | 2026-06-28 | 2026-07-06 |  |  |  |  |
| ENG-SH-SD-CB-A-110 |  | Approval Shop Drawings for Secondary Line and Catch Basin of Storm Drainage Network | 7d | 2026-06-28 A | 2026-07-06 A | ENG-SH-SD-CB-S-100_R | 100% |  |  |

| ID | WBS | Activity | Duration | Start | Finish | Predecessors | Complete | Planned start | Planned finish |
| --- | --- | --- | --- | --- | --- | --- | --- | --- | --- |
|  | PW | **Potable Water Network** |  | 2026-01-18 | 2026-07-06 |  |  |  |  |
|  | 1 | **Main Line Sections** |  | 2026-01-18 | 2026-06-30 |  |  |  |  |
|  | 1 | **Submittal** |  | 2026-01-18 | 2026-01-21 |  |  |  |  |
| ENG-SH-PW-ML-S-100 |  | Submission Shop Drawings for Main Line and Valve Chambers of Potable Water Network | 4.25d | 2026-01-18 A | 2026-01-21 A | MS-CS-PS SS, ENG-SH-SD-ML-S-100 SS | 100% | 2026-01-18 | 2026-01-22 |
|  | 2 | **Approval** |  | 2026-06-23 | 2026-06-30 |  |  |  |  |
| ENG-SH-PW-ML-A-110 |  | Approval Shop Drawings for Main Line and Valve Chambers of Potable Water Network | 7d | 2026-06-23 A | 2026-06-30 A | ENG-SH-PW-ML-S-100 | 100% |  |  |
|  | 2 | **Fire Hydrant** |  | 2026-06-23 | 2026-07-06 |  |  |  |  |
|  | 1 | **Submittal** |  | 2026-06-23 | 2026-06-28 |  |  |  |  |
| ENG-SH-PW-FH-S-100 |  | Submission Shop Drawings for Fire Hydrant Network | 5d | 2026-06-23 A | 2026-06-28 A | MS-CS-PS SS, ENG-SH-PW-ML-S-100 SS | 100% |  |  |
|  | 2 | **Approval** |  | 2026-06-29 | 2026-07-06 |  |  |  |  |
| ENG-SH-PW-FH-A-110 |  | Approval Shop Drawings for Fire Hydrant Network | 7d | 2026-06-29 A | 2026-07-06 A | ENG-SH-PW-FH-S-100 | 100% |  |  |
|  | IR | **Irrigation Network** |  | 2026-06-23 | 2026-07-07 |  |  |  |  |
|  | 1 | **Main Line Sections** |  | 2026-06-23 | 2026-07-07 |  |  |  |  |
|  | 1 | **Submittal** |  | 2026-06-23 | 2026-06-29 |  |  |  |  |
| ENG-SH-IR-ML-S-100 |  | Submission Shop Drawings for Main Line and Valves & Bulbblers and Sprinklers of Irrigation Network | 6d | 2026-06-23 A | 2026-06-29 A | MS-CS-PS SS, ENG-SH-PW-ML-S-100 SS | 100% |  |  |
|  | 2 | **Approval** |  | 2026-06-30 | 2026-07-07 |  |  |  |  |
| ENG-SH-IR-ML-A-110 |  | Approval Shop Drawings for Main Line and Valves & Bulbblers and Sprinklers of Irrigation Network | 7d | 2026-06-30 A | 2026-07-07 A | ENG-SH-IR-ML-S-100 | 100% |  |  |
|  | TSE | **Treated Sewage Effluent Network** |  | 2026-06-23 | 2026-07-07 |  |  |  |  |
|  | 1 | **Main Line Sections** |  | 2026-06-23 | 2026-07-07 |  |  |  |  |
|  | 1 | **Submittal** |  | 2026-06-23 | 2026-06-29 |  |  |  |  |
| ENG-SH-TSE-ML-S-110 |  | Submission Shop Drawings for Main Line Treated Sewage Effluent Network | 6d | 2026-06-23 A | 2026-06-29 A | MS-CS-PS SS, ENG-SH-IR-ML-S-100 SS | 100% |  |  |
|  | 2 | **Approval** |  | 2026-06-30 | 2026-07-07 |  |  |  |  |
| ENG-SH-TSE-ML-A-120 |  | Approval Shop Drawings for Main Line Treated Sewage Effluent Network | 7d | 2026-06-30 A | 2026-07-07 A | ENG-SH-TSE-ML-S-110 | 100% |  |  |
|  | MV | **Medium Voltage Network** |  | 2026-01-17 | 2026-07-07 |  |  |  |  |
|  | 1 | **Submittal** |  | 2026-01-17 | 2026-01-22 |  |  |  |  |
| ENG-SH-MV-S-100 |  | Submission Shop Drawings for Medium Voltage Network | 6.25d | 2026-01-17 A | 2026-01-22 A | MS-CS-PS SS, MS-CS-PS | 100% | 2026-01-17 | 2026-01-24 |

| ID | WBS | Activity | Duration | Start | Finish | Predecessors | Complete | Planned start | Planned finish |
| --- | --- | --- | --- | --- | --- | --- | --- | --- | --- |
|  | 2 | **Approval** |  | 2026-06-30 | 2026-07-07 |  |  |  |  |
| ENG-SH-MV-A-110 |  | Approval Shop Drawings for Medium Voltage Network | 7d | 2026-06-30 A | 2026-07-07 A | ENG-SH-MV-S-100, ENG-SH-IR-ML-S-100 | 100% |  |  |
|  | LV | **Low Voltage Network** |  | 2026-06-23 | 2026-07-07 |  |  |  |  |
|  | 1 | **Submittal** |  | 2026-06-23 | 2026-06-29 |  |  |  |  |
| ENG-SH-LV-S-110 |  | Submission Shop Drawings for Low Voltage Network | 6d | 2026-06-23 A | 2026-06-29 A | MS-CS-PS SS, ENG-SH-IR-ML-S-100 SS | 100% |  |  |
|  | 2 | **Approval** |  | 2026-06-30 | 2026-07-07 |  |  |  |  |
| ENG-SH-LV-A-120 |  | Approval Shop Drawings for Low Voltage Network | 7d | 2026-06-30 A | 2026-07-07 A | ENG-SH-LV-S-110 | 100% |  |  |
|  | SL | **Street Lighting Network** |  | 2026-01-17 | 2026-07-02 |  |  |  |  |
|  | 1 | **Submittal** |  | 2026-01-17 | 2026-06-29 |  |  |  |  |
| ENG-SH-SL-S-100 |  | Submission Shop Drawings for Street Lighting Network(Completed) | 115.25d | 2026-01-17 A | 2026-06-15 A | MS-CS-PS SS, ENG-SH-MV-S-100 SS+4d | 100% | 2026-01-17 | 2026-06-16 |
| ENG-SH-SL-S-100_R |  | Submission Shop Drawings for Street Lighting Network(Remaining) | 6d | 2026-06-23 A | 2026-06-29 A | MS-CS-PS SS, ENG-SH-MV-S-100 SS+4d, ENG-SH-SL-S-100 | 100% |  |  |
|  | 2 | **Approval** |  | 2026-06-25 | 2026-07-02 |  |  |  |  |
| ENG-SH-SL-A-110 |  | Approval Shop Drawings for Street Lighting Network | 7d | 2026-06-25 A | 2026-07-02 A | ENG-SH-SL-S-100_R SS+2d, ENG-SH-SL-S-100_R FF | 100% |  |  |
|  | TL | **Telecom Network** |  | 2026-06-29 | 2026-07-07 |  |  |  |  |
|  | 1 | **Submittal** |  | 2026-06-30 | 2026-07-06 |  |  |  |  |
| ENG-SH-CTV-S-100 |  | Submission Shop Drawings for CCTV Complete System | 6d | 2026-06-30 A | 2026-07-06 A | MS-CS-PS SS, ENG-SH-TE-S-100 SS, ENG-SH-TE-S-100 FF | 100% |  |  |
| ENG-SH-MSN-S-110 |  | Submission Shop Drawings for MSN System | 6d | 2026-06-30 A | 2026-07-06 A | MS-CS-PS SS, ENG-SH-CTV-S-100 SS | 100% |  |  |
| ENG-SH-TE-S-100 |  | Submission Shop Drawings for Telecom Network | 6d | 2026-06-30 A | 2026-07-06 A | MS-CS-PS SS, ENG-SH-LV-S-110 | 100% |  |  |
|  | 2 | **Approval** |  | 2026-06-29 | 2026-07-07 |  |  |  |  |
| ENG-SH-MSN-A-120 |  | Approval Shop Drawings for MSN System | 7d | 2026-06-29 A | 2026-07-06 A | ENG-SH-MSN-S-110 FF, ENG-SH-MSN-S-110 | 100% |  |  |
| ENG-SH-CTV-A-110 |  | Approval Shop Drawings for CCTV Complete System | 7d | 2026-06-30 A | 2026-07-07 A | ENG-SH-CTV-S-100 SS | 100% |  |  |
| ENG-SH-TE-A-110 |  | Approval Shop Drawings for Telecom Network | 7d | 2026-06-30 A | 2026-07-07 A | ENG-SH-TE-S-100 SS, ENG-SH-TE-S-100 FF | 100% |  |  |
|  | 1 | **Superstructure Works** |  | 2026-01-17 | 2026-07-07 |  |  |  |  |
|  | PS | **Pump Stations** |  | 2026-01-17 | 2026-07-02 |  |  |  |  |
|  | 1 | **Submittal** |  | 2026-01-17 | 2026-06-30 |  |  |  |  |
| ENG-SH-SPS-S-150 |  | Submission Shop Drawings Package for Sewage Pump Stations(Completed) | 115.25d | 2026-01-17 A | 2026-06-15 A | MS-CS-PS SS | 100% | 2026-01-17 | 2026-06-16 |
| ENG-SH-SPS-S-150_R |  | Submission Shop Drawings Package for Sewage Pump Stations(Remaining) | 6d | 2026-06-24 A | 2026-06-30 A | ENG-SH-PW-ML-A-110 FF, MS-CS-PS SS, ENG-SH-SPS-S-150 | 100% |  |  |

| ID | WBS | Activity | Duration | Start | Finish | Predecessors | Complete | Planned start | Planned finish |
| --- | --- | --- | --- | --- | --- | --- | --- | --- | --- |
|  | 2 | **Approval** |  | 2026-06-27 | 2026-07-02 |  |  |  |  |
| ENG-SH-SPS-A-160 |  | Approval Shop Drawings Package for Sewage Pump Stations | 6d | 2026-06-27 A | 2026-07-02 A | ENG-SH-SPS-S-150_R SS+2d, ENG-SH-SPS-S-150_R FF | 100% |  |  |
|  | LS | **Lift Station** |  | 2026-01-17 | 2026-07-02 |  |  |  |  |
|  | 1 | **Submittal** |  | 2026-01-17 | 2026-06-30 |  |  |  |  |
| ENG-SH-LS-S-160 |  | Submission Shop Drawings Package for Lift Stations(Completed) | 115.25d | 2026-01-17 A | 2026-06-15 A | MS-CS-PS SS | 100% | 2026-01-17 | 2026-06-16 |
| ENG-SH-LS-S-160_R |  | Submission Shop Drawings Package for Lift Stations(Remaining) | 6d | 2026-06-24 A | 2026-06-30 A | ENG-SH-SW-ML-A-110 FF, MS-CS-PS SS, ENG-SH-LS-S-160 | 100% |  |  |
|  | 2 | **Approval** |  | 2026-06-27 | 2026-07-02 |  |  |  |  |
| ENG-SH-LS-A-170 |  | Approval Shop Drawings Package for Lift Stations | 6d | 2026-06-27 A | 2026-07-02 A | ENG-SH-LS-S-160_R SS+2d | 100% |  |  |
|  | PO | **Storm Drainage Ponds** |  | 2026-06-28 | 2026-07-06 |  |  |  |  |
|  | 1 | **Submittal** |  | 2026-06-28 | 2026-07-05 |  |  |  |  |
| ENG-SH-DPO-S-110 |  | Submission Shop Drawings Package for Storm Drainage Ponds | 6d | 2026-06-28 A | 2026-07-05 A | MS-CS-PS SS, ENG-SH-SD-ML-A-110 SS, ENG-SH-SD-CB-A-110 SS | 100% |  |  |
|  | 2 | **Approval** |  | 2026-06-29 | 2026-07-06 |  |  |  |  |
| ENG-SH-DPO-A-120 |  | Approval Shop Drawings Package for Storm Drainage Ponds | 6d | 2026-06-29 A | 2026-07-06 A | ENG-SH-DPO-S-110 SS+1d, ENG-SH-DPO-S-110 FF | 100% |  |  |
|  | ST | **Storage Tank (TSE)** |  | 2026-06-30 | 2026-07-07 |  |  |  |  |
|  | 1 | **Submittal** |  | 2026-06-30 | 2026-07-06 |  |  |  |  |
| ENG-SH-ST-S-170 |  | Submission Shop Drawings Package for Storage Tank TSE | 6d | 2026-06-30 A | 2026-07-06 A | MS-CS-PS SS, ENG-SH-TSE-ML-A-120 SS | 100% |  |  |
|  | 2 | **Approval** |  | 2026-07-01 | 2026-07-07 |  |  |  |  |
| ENG-SH-ST-A-180 |  | Approval Shop Drawings Package for Storage Tank TSE | 6d | 2026-07-01 A | 2026-07-07 A | ENG-SH-ST-S-170 SS+1d, ENG-SH-ST-S-170 FF | 100% |  |  |
|  | GR | **Gaurd Room** |  | 2026-06-23 | 2026-06-29 |  |  |  |  |
| ENG-SH-GR-A-190 |  | Approval Shop Drawings Package for Gaurd Room | 6d | 2026-06-23 A | 2026-06-29 A | ENG-SH-GR-S-180 SS, ENG-SH-GR-S-180 FF | 100% |  |  |
|  | 1 | **Submittal** |  | 2026-06-23 | 2026-06-29 |  |  |  |  |
| ENG-SH-GR-S-180 |  | Submission Shop Drawings Package for Gaurd Room | 6d | 2026-06-23 A | 2026-06-29 A | MS-CS-PS SS, ENG-SH-RD-A-100 SS+7d | 100% |  |  |
|  | 2 | **Approval** |  |  |  |  |  |  |  |
|  | FE | **Fence** |  | 2026-01-29 | 2026-06-28 |  |  |  |  |
|  | 1 | **Submittal** |  | 2026-01-29 | 2026-06-27 |  |  |  |  |
| ENG-SH-GR-S-190 |  | Submission Shop Drawings Package for Fence(Completed) | 104.25d | 2026-01-29 A | 2026-06-15 A | MS-CS-PS SS, ENG-SH-RD-A-100 SS | 100% | 2026-01-29 | 2026-06-16 |
| ENG-SH-GR-S-190_R |  | Submission Shop Drawings Package for Fence(Remaining) | 3.48d | 2026-06-23 A | 2026-06-27 A | MS-CS-PS SS, ENG-SH-RD-A-100 SS, ENG-SH-GR-S-190 | 100% |  |  |

| ID | WBS | Activity | Duration | Start | Finish | Predecessors | Complete | Planned start | Planned finish | Resources | 01- Network |
| --- | --- | --- | --- | --- | --- | --- | --- | --- | --- | --- | --- |
|  | 2 | **Approval** |  | 2026-01-29 | 2026-06-28 |  |  |  |  |  |  |
| ENG-SH-GR-A-200 |  | Approval Shop Drawings Package for Fence(Completed) | 104.25d | 2026-01-29 A | 2026-06-15 A | ENG-SH-GR-S-190 SS | 100% | 2026-01-29 | 2026-06-16 |  |  |
| ENG-SH-GR-A-200_R |  | Approval Shop Drawings Package for Fence(Remaining) | 4.2d | 2026-06-23 A | 2026-06-28 A | ENG-SH-GR-S-190_R SS, ENG-SH-GR-A-200, ENG-SH-GR-S-190_R FF | 100% |  |  |  |  |
|  | SD11 | **Material Submittals and Approvals** |  | 2026-01-06 | 2026-10-14 |  |  |  |  |  |  |
|  | 2 | **Short Lead Time Items** |  | 2026-01-06 | 2026-10-13 |  |  |  |  |  |  |
|  | INF | **Infrastructure Networks** |  | 2026-01-06 | 2026-07-12 |  |  |  |  |  |  |
|  | 10 | **Road Works** |  | 2026-01-10 | 2026-03-11 |  |  |  |  |  |  |
|  | MS | **Submission of Material** |  | 2026-01-10 | 2026-03-07 |  |  |  |  |  |  |
|  | 1 | **Roads Works** |  | 2026-01-10 | 2026-01-19 |  |  |  |  |  |  |
| ENG-MT-RD-S-100 |  | Material Submittal for Subgrade of Road Works | 9.25d | 2026-01-10 A | 2026-01-19 A | ENG-SH-RD-S-100 | 100% | 2026-01-10 | 2026-01-20 |  |  |
| ENG-MT-RD-S-110 |  | Material Submittal for Aggregate Base Course of Road Works | 9.25d | 2026-01-10 A | 2026-01-19 A | ENG-SH-RD-S-100 | 100% | 2026-01-10 | 2026-01-20 |  |  |
| ENG-MT-RD-S-120 |  | Material Submittal for Prime Coat of Road Works | 9.25d | 2026-01-10 A | 2026-01-19 A | ENG-SH-RD-S-100 | 100% | 2026-01-10 | 2026-01-20 |  |  |
| ENG-MT-RD-S-130 |  | Material Submittal for Bituminous Base & Wearing Courses of Road Works | 9.25d | 2026-01-10 A | 2026-01-19 A | ENG-SH-RD-S-100 | 100% | 2026-01-10 | 2026-01-20 |  |  |
|  | 10 | **Pavement Works** |  | 2026-01-11 | 2026-01-19 |  |  |  |  |  |  |
| ENG-MT-RD-S-140 |  | Material Submittal for Interlock Tiles of Landscaping | 8.25d | 2026-01-11 A | 2026-01-19 A | ENG-MT-RD-S-130 SS | 100% | 2026-01-11 | 2026-01-20 |  |  |
| ENG-MT-RD-S-150 |  | Material Submittal for Curbstones of Landscaping | 8.25d | 2026-01-11 A | 2026-01-19 A | ENG-MT-RD-S-130 SS | 100% | 2026-01-11 | 2026-01-20 |  |  |
|  | 11 | **Traffic Signs Boards and Roads Marking** |  | 2026-02-26 | 2026-03-07 |  |  |  |  |  |  |
| ENG-MT-TS-S-100 |  | Material Submittal for Traffic Signs Boards of Road Works | 1.25d | 2026-02-26 A | 2026-02-28 A | MS-CS-PS | 100% |  |  |  |  |
| ENG-MT-TS-S-110 |  | Material Submittal for Road Markings of Road Works | 6d | 2026-03-01 A | 2026-03-07 A | ENG-SH-RD-A-100 | 100% | 2026-06-28 | 2026-07-04 |  |  |
|  | NA | **Approval of Material** |  | 2026-01-18 | 2026-03-11 |  |  |  |  |  |  |
|  | 1 | **Road Works** |  | 2026-01-18 | 2026-01-20 |  |  |  |  |  |  |
| ENG-MT-RD-A-100 |  | Material Approval for Subgrade of Road Works | 0d | 2026-01-18 A | 2026-01-20 A | ENG-MT-RD-S-100 | 100% | 2026-01-18 | 2026-01-18 | Subgrade | RD |
| ENG-MT-RD-A-110 |  | Material Approval for Aggregate Base Course of Road Works | 0d | 2026-01-18 A | 2026-01-20 A | ENG-MT-RD-S-110 | 100% | 2026-01-18 | 2026-01-18 | Aggregate base course | RD |
| ENG-MT-RD-A-120 |  | Material Approval for Prime Coat of Road Works | 0d | 2026-01-18 A | 2026-01-20 A | ENG-MT-RD-S-120 | 100% | 2026-01-18 | 2026-01-18 | Bituminous base course (Grading I - Class A), including Prime Coat (MC1) | RD |
| ENG-MT-RD-A-130 |  | Material Approval for Bituminous Base & Wearing Courses of Road Works | 0d | 2026-01-18 A | 2026-01-20 A | ENG-MT-RD-S-130 | 100% | 2026-01-18 | 2026-01-18 | Bituminous concrete wearing course, (Grading I - Class A), including tack coat (RC2) | RD |

| ID | WBS | Activity | Duration | Start | Finish | Predecessors | Complete | Planned start | Planned finish | Resources | 01- Network |
| --- | --- | --- | --- | --- | --- | --- | --- | --- | --- | --- | --- |
|  | 2 | **Pavement Works** |  | 2026-01-18 | 2026-01-20 |  |  |  |  |  |  |
| ENG-MT-RD-A-140 |  | Material Approval of Interlock Tiles for Landscaping | 0d | 2026-01-18 A | 2026-01-20 A | ENG-MT-RD-S-140 | 100% | 2026-01-18 | 2026-01-18 | 60mm thick; 80mm thick | RD |
| ENG-MT-RD-A-150 |  | Material Approval of Curbstones for Landscaping | 0d | 2026-01-18 A | 2026-01-20 A | ENG-MT-RD-S-150 | 100% | 2026-01-18 | 2026-01-18 | Precast Concrete Curbstone 150X300X900 Type (K1-A); Precast Concrete Curbstone 100X200X500 Type (K4); Precast Concrete Curbstone 150X300X500 Type (K1-B); Precast Concrete Curbstone Type (K1-C); Flush Kerb Type (D) | RD |
|  | 3 | **Traffic Signs Boards and Roads Marking** |  | 2026-02-28 | 2026-03-11 |  |  |  |  |  |  |
| ENG-MT-TS-A-100 |  | Material Approval for Traffic Signs Boards of Road Works | 0d | 2026-02-28 A | 2026-03-02 A | ENG-MT-TS-S-100, MS-CS-PS | 100% | 2026-02-28 | 2026-02-28 | Traffic signs, ground mounted, Sheet Aluminum, (breakaway) Single post IPE, with all accessories; Precast Concrete Blister Warning Tactile Paver Brown Finish 300*300*60mm | RD |
| ENG-MT-TS-A-110 |  | Material Approval for Road Markings of Road Works | 0d | 2026-03-08 A | 2026-03-11 A | MS-CS-PS | 100% | 2026-03-08 | 2026-03-08 | Retroreflective Thermoplastic White Traffic lines; Retroreflective Thermoplastic Yellow, Traffic lines | RD |
|  | 6 | **Softscape and Planting Works** |  | 2026-06-27 | 2026-07-12 |  |  |  |  |  |  |
|  | 1 | **Submission of Material** |  | 2026-06-27 | 2026-07-04 |  |  |  |  |  |  |
| ENG-MT-IR-ML-S-140 |  | Material Submittal for Softscape and Planting Works | 6d | 2026-06-27 A | 2026-07-04 A | ENG-SH-HS-A-110 SS | 100% |  |  |  |  |
| ENG-MT-IR-ML-S-150 |  | Material Submittal for Site Furnishings (Seating Bench,Stone Boulders and Gravel) | 6d | 2026-06-27 A | 2026-07-04 A | ENG-SH-HS-A-110 SS | 100% |  |  |  |  |
|  | 2 | **Approval of Material** |  | 2026-07-04 | 2026-07-12 |  |  |  |  |  |  |
| ENG-MT-IR-ML-A-140 |  | Material Approval for Softscape and Planting Works | 7d | 2026-07-04 A | 2026-07-12 A | ENG-MT-IR-ML-S-140, ENG-SH-HS-A-110 SS | 100% |  |  |  |  |
| ENG-MT-IR-ML-A-150 |  | Material Approval for Site Furnishings (Seating Bench,Stone Boulders and Gravel) | 6d | 2026-07-04 A | 2026-07-11 A | ENG-MT-IR-ML-S-150, ENG-SH-HS-A-110 SS | 100% |  |  |  |  |
|  | 2 | **Sewage Network** |  | 2026-01-11 | 2026-07-07 |  |  |  |  |  |  |
|  | MS | **Submission of Material** |  | 2026-01-11 | 2026-06-29 |  |  |  |  |  |  |
|  | 1 | **Main Line Sections** |  | 2026-01-11 | 2026-01-26 |  |  |  |  |  |  |
| ENG-MT-SW-ML-S-110 |  | Material Submittal for Main Line Pipes of Sewage Network | 14.25d | 2026-01-11 A | 2026-01-26 A | ENG-MT-RD-S-150 SS | 100% | 2026-01-11 | 2026-01-27 |  |  |
| ENG-MT-SW-ML-S-100 |  | Material Submittal for Manholes of Sewage Network | 5.25d | 2026-01-20 A | 2026-01-25 A | ENG-MT-RD-S-150 SS | 100% | 2026-01-20 | 2026-01-26 |  |  |
|  | 3 | **Testing and Finishes** |  | 2026-06-23 | 2026-06-29 |  |  |  |  |  |  |
| ENG-MT-SW-TF-S-100 |  | Material Submittal for Manhole Covers of Sewage Network | 6d | 2026-06-23 A | 2026-06-29 A | ENG-MT-RD-S-150 SS | 100% |  |  |  |  |
|  | MA | **Approval of Material** |  | 2026-01-21 | 2026-07-07 |  |  |  |  |  |  |
|  | 1 | **Main Line Sections** |  | 2026-01-21 | 2026-01-26 |  |  |  |  |  |  |
| ENG-MT-SW-ML-A-100 |  | Material Approval for Manholes of Sewage Network | 0d | 2026-01-21 A | 2026-01-26 A | ENG-MT-SW-ML-S-100 | 100% | 2026-01-21 | 2026-01-21 | Depth: 0 - 1.5m; Depth: 1.51 - 2.5m; Depth: 2.51 - 3.5m; Depth > 3.50m | SW |
| ENG-MT-SW-ML-A-110 |  | Material Approval for Main Line Pipes of Sewage Network | 0d | 2026-01-22 A | 2026-01-25 A | ENG-MT-SW-ML-S-110 | 100% | 2026-01-22 | 2026-01-22 | Depth Between 0m to 1.50m; Depth Between 1.50m to 2.50m; Depth > 2.50m; Depth Between 2.50m to 3.50m; Depth > 3.50m; HDPE Force Main (PE 100, SDR 11, PN 16 bar) DN 160 mm diameter, in trenches depth: 0- 1.5m; HDPE Force Main (PE 100, SDR 11, PN 16 bar) DN 160 mm diameter, in trenches depth: 1.51- 2.5m | SW |

| ID | WBS | Activity | Duration | Start | Finish | Predecessors | Complete | Planned start | Planned finish | Resources | 01- Network |
| --- | --- | --- | --- | --- | --- | --- | --- | --- | --- | --- | --- |
|  | 3 | **Testing and Finishes** |  | 2026-06-30 | 2026-07-07 |  |  |  |  |  |  |
| ENG-MT-SW-TF-A-100 |  | Material Approval for Manhole Covers of Sewage Network | 7d | 2026-06-30 A | 2026-07-07 A | ENG-MT-SW-TF-S-100 | 100% |  |  |  |  |
|  | 9 | **Storm Drainage Network** |  | 2026-01-06 | 2026-07-07 |  |  |  |  |  |  |
|  | MS | **Submission of Material** |  | 2026-01-06 | 2026-06-29 |  |  |  |  |  |  |
|  | 1 | **Main Line Sections** |  | 2026-01-06 | 2026-01-13 |  |  |  |  |  |  |
| ENG-MT-SD-ML-S-100 |  | Material Submittal for Manholes of Storm Drainage Network | 7.25d | 2026-01-06 A | 2026-01-13 A | ENG-SH-SD-ML-S-100 SS, ENG-SH-SD-ML-A-110 | 100% | 2026-01-06 | 2026-01-14 |  |  |
| ENG-MT-SD-ML-S-110 |  | Material Submittal for Main Line Pipes of Storm Drainage Network | 7.25d | 2026-01-06 A | 2026-01-13 A | ENG-SH-SD-ML-S-100 SS | 100% | 2026-01-06 | 2026-01-14 |  |  |
|  | 2 | **Catch Basin Sections** |  | 2026-01-06 | 2026-01-13 |  |  |  |  |  |  |
| ENG-MT-SD-CB-S-100 |  | Material Submittal for Catch Basins of Storm Drainage Network | 7.25d | 2026-01-06 A | 2026-01-13 A | ENG-SH-SD-ML-S-100 SS | 100% | 2026-01-06 | 2026-01-14 |  |  |
| ENG-MT-SD-CB-S-110 |  | Material Submittal for Catch Basin Pipes of Storm Drainage Network | 7.25d | 2026-01-06 A | 2026-01-13 A | ENG-SH-SD-ML-S-100 SS | 100% | 2026-01-06 | 2026-01-14 |  |  |
|  | 3 | **Testing and Finishes** |  | 2026-06-23 | 2026-06-29 |  |  |  |  |  |  |
| ENG-MT-SD-TF-S-100 |  | Material Submittal for Manhole Covers of Storm Drainage Network | 6d | 2026-06-23 A | 2026-06-29 A | ENG-SH-SD-ML-S-100 SS | 100% |  |  |  |  |
| ENG-MT-SD-TF-S-110 |  | Material Submittal for Catch Basin Covers of Storm Drainage Network | 6d | 2026-06-23 A | 2026-06-29 A | ENG-SH-SD-ML-S-100 SS | 100% |  |  |  |  |
|  | MA | **Approval of Material** |  | 2026-01-15 | 2026-07-07 |  |  |  |  |  |  |
|  | 1 | **Main Line Sections** |  | 2026-01-15 | 2026-01-19 |  |  |  |  |  |  |
| ENG-MT-SD-ML-A-100 |  | Material Approval for Manholes of Storm Drainage Network | 0d | 2026-01-15 A | 2026-01-19 A | ENG-MT-SD-ML-S-100 | 100% | 2026-01-15 | 2026-01-15 | MH depth 1.5 - 2.5m; MH depth 2.5 - 3.5m; MH depth > 3.50m; MH depth 2.5 -3.5m | SD |
| ENG-MT-SD-ML-A-110 |  | Material Approval for Main Line Pipes of Storm Drainage Network | 0d | 2026-01-15 A | 2026-01-19 A | ENG-MT-SD-ML-S-110 | 100% | 2026-01-15 | 2026-01-15 | Depth Between 1.50m to 2.50m; Depth Between 2.50m to 3.50m; Depth > 3.50m; Depth Between 0m to 1.50m; Depth Between 3.50m to 4.50m; Depth > 4.50m | SD |
|  | 2 | **Catch Basin Sections** |  | 2026-01-15 | 2026-01-19 |  |  |  |  |  |  |
| ENG-MT-SD-CB-A-100 |  | Material Approval for Catch Basins of Storm Drainage Network | 0d | 2026-01-15 A | 2026-01-19 A | ENG-MT-SD-CB-S-100 | 100% | 2026-01-15 | 2026-01-15 | Single Catch Basin 1000mm x 1000mm; Double Catch Basin 1200mm x 2300mm | SD |
| ENG-MT-SD-CB-A-110 |  | Material Approval for Catch Basin Pipes of Storm Drainage Network | 0d | 2026-01-15 A | 2026-01-19 A | ENG-MT-SD-CB-S-110 | 100% | 2026-01-15 | 2026-01-15 | Depth Between 0m to 1.50m; Depth Between 1.50m to 2.50m; Depth > 2.50m | SD |
|  | 3 | **Testing and Finishes** |  | 2026-06-30 | 2026-07-07 |  |  |  |  |  |  |
| ENG-MT-SD-TF-A-100 |  | Material Approval for Manhole Covers of Storm Drainage Network | 7d | 2026-06-30 A | 2026-07-07 A | ENG-MT-SD-TF-S-100 | 100% |  |  |  |  |
| ENG-MT-SD-TF-A-110 |  | Material Approval for Catch Basin Covers of Storm Drainage Network | 7d | 2026-06-30 A | 2026-07-07 A | ENG-MT-SD-TF-S-110 | 100% |  |  |  |  |
|  | 3 | **Potable Water Network** |  | 2026-01-24 | 2026-07-07 |  |  |  |  |  |  |
|  | MS | **Submission of Material** |  | 2026-01-24 | 2026-06-29 |  |  |  |  |  |  |
|  | 1 | **Main Line Sections** |  | 2026-01-24 | 2026-06-29 |  |  |  |  |  |  |
| ENG-MT-PW-ML-S-100 |  | Material Submittal for Main Line Pipes of Potable Water Network | 6d | 2026-01-24 A | 2026-01-25 A | ENG-SH-PW-ML-S-100 SS | 100% | 2026-06-23 | 2026-06-29 |  |  |
| ENG-MT-PW-ML-S-110 |  | Material Submittal for Main Line Valves of Potable Water Network | 6d | 2026-06-23 A | 2026-06-29 A | ENG-SH-PW-ML-S-100 SS | 100% |  |  |  |  |

| ID | WBS | Activity | Duration | Start | Finish | Predecessors | Complete | Planned start | Planned finish | Resources | 01- Network | Displane |
| --- | --- | --- | --- | --- | --- | --- | --- | --- | --- | --- | --- | --- |
|  | 3 | **Fire Hydrant** |  | 2026-06-23 | 2026-06-29 |  |  |  |  |  |  |  |
| ENG-MT-PW-FH-S-100 |  | Material Submittal for Fire Hydrant of Potable Water Network | 6d | 2026-06-23 A | 2026-06-29 A | ENG-SH-PW-ML-S-100 SS | 100% |  |  |  |  |  |
|  | 4 | **Testing and Finishes** |  | 2026-06-23 | 2026-06-29 |  |  |  |  |  |  |  |
| ENG-MT-PW-TF-S-100 |  | Material Submittal for Surface Box of Potable Water Network | 6d | 2026-06-23 A | 2026-06-29 A | ENG-SH-PW-ML-S-100 SS | 100% |  |  |  |  |  |
|  | MA | **Approval of Material** |  | 2026-01-25 | 2026-07-07 |  |  |  |  |  |  |  |
|  | 1 | **Main Line Sections** |  | 2026-01-25 | 2026-07-07 |  |  |  |  |  |  |  |
| ENG-MT-PW-ML-A-100 |  | Material Approval for Main Line Pipes of Potable Water Network | 7d | 2026-01-25 A | 2026-01-27 A | ENG-MT-PW-ML-S-100 | 100% | 2026-06-30 | 2026-07-07 |  |  |  |
| ENG-MT-PW-ML-A-110 |  | Material Approval for Valves of Potable Water Network | 7d | 2026-06-30 A | 2026-07-07 A | ENG-MT-PW-ML-S-110 | 100% |  |  |  |  |  |
|  | 3 | **Fire Hydrant** |  | 2026-06-30 | 2026-07-07 |  |  |  |  |  |  |  |
| ENG-MT-PW-FH-A-100 |  | Material Approval for Fire Hydrants of Potable Water Network | 7d | 2026-06-30 A | 2026-07-07 A | ENG-MT-PW-FH-S-100 | 100% |  |  |  |  |  |
|  | 4 | **Testing and Finishes** |  | 2026-06-30 | 2026-07-07 |  |  |  |  |  |  |  |
| ENG-MT-PW-TF-A-100 |  | Material Approval for Surface Box of Potable Water Network | 7d | 2026-06-30 A | 2026-07-07 A | ENG-MT-PW-TF-S-100 | 100% |  |  |  |  |  |
|  | 4 | **Irrigation Network** |  | 2026-01-06 | 2026-01-27 |  |  |  |  |  |  |  |
|  | MS | **Submission of Material** |  | 2026-01-06 | 2026-01-27 |  |  |  |  |  |  |  |
|  | 1 | **Main Line Pipes** |  | 2026-01-06 | 2026-01-27 |  |  |  |  |  |  |  |
| ENG-MT-IR-ML-S-100 |  | Material Submittal for Main Line Pipes of Irrigation Network | 19.25d | 2026-01-06 A | 2026-01-27 A | MS-CS-PS | 100% | 2026-01-06 | 2026-01-28 |  |  |  |
| ENG-MT-IR-ML-S-110 |  | Material Submittal for Main Line Valves of Irrigation Network | 19.25d | 2026-01-06 A | 2026-01-27 A | MS-CS-PS | 100% | 2026-01-06 | 2026-01-28 |  |  |  |
|  | MA | **Approval of Material** |  | 2026-01-18 | 2026-01-26 |  |  |  |  |  |  |  |
|  | 1 | **Main Line Pipes** |  | 2026-01-18 | 2026-01-26 |  |  |  |  |  |  |  |
| ENG-MT-IR-ML-A-100 |  | Material Approval for Main Line Pipes of Irrigation Network | 0d | 2026-01-18 A | 2026-01-24 A | ENG-MT-IR-ML-S-100 | 100% | 2026-01-18 | 2026-01-18 | Depth Between 0m to 1.50m; Depth Between 1.50m to 2.50m; Depth > 2.50m; pipe line O.D 32 mm PN 10, in depth 0 to 1.5 m; pipe line O.D 40 mm PN 10, in depth 0 to 1.5 m; pipe line O.D 50 mm PN 10, in depth 0 to 1.5 m | IR | irr |
| ENG-MT-IR-ML-A-110 |  | Material Approval for Valves of Irrigation Network | 0d | 2026-01-24 A | 2026-01-26 A | ENG-MT-IR-ML-S-110 | 100% | 2026-01-24 | 2026-01-24 | Gate valves Dia 50 mm; Gate valves Dia 100 mm; Gate valves Dia 150 mm; Gate valves Dia 250 mm; Air valves with Dia 50 mm; Washout valve Dia 100 mm; 3-outlet fire hydrant (2 x 2.5 inch and 1 x 4.5 inch) in the form of a separate dry vacuum cylinder, complete according to drawings.; Wash out chamber (2500x 2500mm); Air valve chamber (1000x 1000 mm); Flow meter chamber (1500x 2500 mm); Flow meter dia 100 mm; Gate valve 50 mm PN16; Direct Burried Gate valve 40 mm PN16; Pressure–compensating bubblers 110 Lit/Hr; Flushing Bronze gate valve dia 1.5" inside PVC box; Air release valve 1.5" inside PVC box; Extra flexible pressure compensating on surface inline dripline`s, O.D. is 16.1 mm; Electrical Solenoid Valve ( 1.5") inside PVC box; Electrical Solenoid Valve ( 2") inside PVC box; Quick coupling valve 1" inside a round valve box 10" size with a manual gate valve, hose swivel and key with all accessories; Advanced Irrigation controller subject to client approval, can connect with Centarl Control system; Decoder cables 12 AWG between valves and controllers, The cables shall be pulled through 32Ø UPVC conduit; Preparing the irrigation program for the entire system and providing technical services for monitoring and controlling the central irrigation systems | IR | irr |
|  | 1 | **Treated Sewage Effluent (Tse)** |  | 2026-01-17 | 2026-02-16 |  |  |  |  |  |  |  |
|  | MS | **Submission of Material** |  | 2026-01-17 | 2026-02-04 |  |  |  |  |  |  |  |
|  | 1 | **Main Line Pipes** |  | 2026-01-17 | 2026-02-04 |  |  |  |  |  |  |  |
| ENG-MT-IR-ML-S-120 |  | Material Submittal for Main Line Pipes of Irrigation Network | 9.25d | 2026-01-17 A | 2026-01-26 A | MS-CS-PS | 100% | 2026-01-17 | 2026-01-27 |  |  |  |
| ENG-MT-IR-ML-S-130 |  | Material Submittal for Main Line Valves of Irrigation Network | 2.25d | 2026-02-03 A | 2026-02-04 A | MS-CS-PS | 100% | 2026-02-03 | 2026-02-05 |  |  |  |

| ID | WBS | Activity | Duration | Start | Finish | Predecessors | Complete | Planned start | Planned finish | Resources | 01- Network |
| --- | --- | --- | --- | --- | --- | --- | --- | --- | --- | --- | --- |
|  | MA | **Approval of Material** |  | 2026-01-29 | 2026-02-16 |  |  |  |  |  |  |
|  | 1 | **Main Line Pipes** |  | 2026-01-29 | 2026-02-16 |  |  |  |  |  |  |
| ENG-MT-IR-ML-A-120 |  | Material Approval for Main Line Pipes of Irrigation Network | 0d | 2026-01-29 A | 2026-02-16 A | ENG-MT-IR-ML-S-120 | 100% | 2026-01-29 | 2026-01-29 | Depth Between 0m to 1.50m; Depth Between 1.50m to 2.50m; Depth > 2.50m | TSE |
| ENG-MT-IR-ML-A-130 |  | Material Approval for Valves of Irrigation Network | 0d | 2026-02-04 A | 2026-02-09 A | ENG-MT-IR-ML-S-130 | 100% | 2026-02-04 | 2026-02-04 | Gate valves dia 50 mm; Gate valves dia 100 mm; Gate valves dia 150 mm; Gate valves dia 200 mm; Air valves with dia 50 mm; Washout valve dia 100 mm; Wash out chamber (2500x 2500mm); Air valve chamber (1000x 1000 mm); Flow meter chamber (1500x 3000 mm); Flow meter dia 150 mm | TSE |
|  | 5 | **Medium Voltage Network** |  | 2026-01-06 | 2026-07-07 |  |  |  |  |  |  |
|  | MS | **Submission of Material** |  | 2026-01-06 | 2026-06-29 |  |  |  |  |  |  |
|  | 1 | **Cabling Works** |  | 2026-01-06 | 2026-01-13 |  |  |  |  |  |  |
| ENG-MT-MV-ML-S-100 |  | Material Submittal for Medium Voltage Cables of Medium Voltage Network | 7.25d | 2026-01-06 A | 2026-01-13 A | ENG-SH-MV-S-100 SS | 100% | 2026-01-06 | 2026-01-14 |  |  |
|  | 3 | **Termination and Testing Works** |  | 2026-06-23 | 2026-06-29 |  |  |  |  |  |  |
| ENG-MT-MV-TF-S-100 |  | Material Submittal for Termination Kits of Medium Voltage Network | 6d | 2026-06-23 A | 2026-06-29 A | ENG-SH-MV-S-100 SS | 100% |  |  |  |  |
|  | MA | **Approval of Material** |  | 2026-01-14 | 2026-07-07 |  |  |  |  |  |  |
|  | 1 | **Cabling Works** |  | 2026-01-14 | 2026-01-20 |  |  |  |  |  |  |
| ENG-MT-MV-ML-A-100 |  | Material Approval for Medium Voltage Cables of Medium Voltage Network | 0d | 2026-01-14 A | 2026-01-20 A | ENG-MT-MV-ML-S-100, ENG-SH-MV-S-100 SS | 100% | 2026-01-14 | 2026-01-14 | Excavation for Trench size 40cm wide and 80cm deep (for 1 cable); Excavation for Trench Size 60cm wide and 80cm deep (for 2 cables); Excavation for Trench Size 90cm wide and 80cm deep (for 3 cables); Excavation for Trench Size 180cm wide and 80cm deep (for 6 cables); Excavation for Trench Size 210 cm wide and 80cm deep (for 7 cables); Excavation for Trench Size 240cm wide and 80cm deep (for 8 cables); Duct bank for (33) cables; Duct bank for (21) cables; Duct bank for (15) cables; HV Cable Road Crossing | MV |
|  | 3 | **Termination and Testing Works** |  | 2026-06-30 | 2026-07-07 |  |  |  |  |  |  |
| ENG-MT-MV-TF-A-100 |  | Material Approval for Termination and Joints Kits of Medium Voltage Network | 7d | 2026-06-30 A | 2026-07-07 A | ENG-MT-MV-TF-S-100, ENG-SH-MV-S-100 | 100% |  |  |  |  |
|  | 7 | **Street Lighting Network** |  | 2026-01-06 | 2026-07-07 |  |  |  |  |  |  |
|  | MS | **Submission of Material** |  | 2026-01-06 | 2026-07-06 |  |  |  |  |  |  |
|  | 1 | **Cabling Works** |  | 2026-02-01 | 2026-02-08 |  |  |  |  |  |  |
| ENG-MT-SL-ML-S-100 |  | Material Submittal for Lighting Cables of Street Lighting Network | 6d | 2026-02-01 A | 2026-02-08 A | ENG-MT-MV-ML-S-100 SS | 100% | 2026-06-23 | 2026-06-29 |  |  |
|  | 2 | **Lighting Poles Works** |  | 2026-01-06 | 2026-01-19 |  |  |  |  |  |  |
| ENG-MT-SL-S-100 |  | Material Submittal for Lighting Poles Concrete Foundations of Street Lighting Network | 7.25d | 2026-01-06 A | 2026-01-13 A | ENG-MT-MV-ML-S-100 SS | 100% | 2026-01-06 | 2026-01-14 |  |  |
| ENG-MT-SL-S-110 |  | Material Submittal for Lighting Poles of Street Lighting Network | 7.25d | 2026-01-06 A | 2026-01-13 A | ENG-MT-MV-ML-S-100 SS | 100% | 2026-01-06 | 2026-01-14 |  |  |
| ENG-MT-SL-S-120 |  | Material Submittal for Lighting Fixtures of Street Lighting Network | 6d | 2026-01-15 A | 2026-01-19 A | ENG-MT-MV-ML-S-100 SS | 100% | 2026-06-23 | 2026-06-29 |  |  |
|  | 3 | **Distribution Panel Board** |  | 2026-02-18 | 2026-02-19 |  |  |  |  |  |  |
| ENG-MT-SL-DB-S-100 |  | Material Submittal for Lighting Distrubution Panel Boards of Street Lighting Network | 1.25d | 2026-02-18 A | 2026-02-19 A | ENG-MT-MV-ML-S-100 SS | 100% |  |  |  |  |

| ID | WBS | Activity | Duration | Start | Finish | Predecessors | Complete | Planned start | Planned finish | Resources | 01- Network |
| --- | --- | --- | --- | --- | --- | --- | --- | --- | --- | --- | --- |
|  | 5 | **Termination and Testing Works** |  | 2026-06-23 | 2026-06-29 |  |  |  |  |  |  |
| ENG-MT-SL-TF-S-100 |  | Material Submittal for Fuse Boxes of Street Lighting Network | 6d | 2026-06-23 A | 2026-06-29 A | ENG-MT-MV-ML-S-100 SS | 100% |  |  |  |  |
| ENG-MT-SL-TF-S-110 |  | Material Submittal for Cable Lugs of Street Lighting Network | 6d | 2026-06-23 A | 2026-06-29 A | ENG-MT-MV-ML-S-100 SS | 100% |  |  |  |  |
|  | 4 | **Earthing System Works** |  | 2026-06-30 | 2026-07-06 |  |  |  |  |  |  |
| ENG-MT-SL-ES-S-100 |  | Material Submittal for Lighting Earthing of Street Lighting Network | 6d | 2026-06-30 A | 2026-07-06 A | ENG-MT-MV-ML-S-100 SS, ENG-MT-SL-TF-S-110, ENG-MT-SL-TF-A-110 SS | 100% |  |  |  |  |
|  | MA | **Approval of Material** |  | 2026-01-14 | 2026-07-07 |  |  |  |  |  |  |
|  | 1 | **Cabling Works** |  | 2026-02-04 | 2026-02-09 |  |  |  |  |  |  |
| ENG-MT-SL-ML-A-100 |  | Material Approval for Lighting Cables of Street Lighting Network | 0d | 2026-02-04 A | 2026-02-09 A | ENG-MT-MV-ML-S-100 | 100% | 2026-02-04 | 2026-02-04 | Road crossing ducts, 2 ways (2 x 150mm HDPE); Road crossing ducts, 2 ways (2 x 110mm UPVC); Road crossing ducts, 3 ways (3 x 110mm UPVC); 4C-300mm2 CU/XLPE / PVC ARMORED CABLE; 4C-240mm2 CU/XLPE / PVC ARMORED CABLE; 4C-185mm2 CU/XLPE / PVC ARMORED CABLE; 4C-50mm2 CU/XLPE / PVC ARMORED CABLE; 4C-16mm2 CU/XLPE / PVC ARMORED CABLE; 4C-16MM2 CU/XLPE / PVC CABLE; 1Cx150sq.mm2,Cu, PVC wire; 1Cx120sq.mm2,Cu, PVC wire; 1Cx95sq.mm,Cu, PVC wire; 1Cx70sq.mm2,Cu, PVC wire; 1Cx25sq.mm2,Cu, PVC wire; 1Cx16sq.mm2,Cu, PVC wire; 1Cx10sq.mm2,Cu, PVC wire; Supply and installation of KWH meter mounting frame including concrete block for installation of KWH meter | SL |
|  | 2 | **Lighting Poles Works** |  | 2026-01-14 | 2026-01-25 |  |  |  |  |  |  |
| ENG-MT-SL-A-100 |  | Material Approval for Lighting Poles Concrete Foundations of Street Lighting Network | 10.25d | 2026-01-14 A | 2026-01-25 A | ENG-MT-SL-S-100 | 100% | 2026-01-14 | 2026-01-26 |  |  |
| ENG-MT-SL-A-110 |  | Material Approval for Lighting Poles of Street Lighting Network | 0d | 2026-01-14 A | 2026-01-25 A | ENG-MT-SL-S-110 | 100% | 2026-01-14 | 2026-01-14 | Lighting poles with 1 arm, height of (12) meters, including the power distribution box, cables, and RCC foundation.; Lighting poles with 2 arms, height of (12) meters, including the power distribution box, cables, and RCC foundation. | SL |
| ENG-MT-SL-A-120 |  | Material Approval for Lighting Fixtures of Street Lighting Network | 0d | 2026-01-22 A | 2026-01-25 A | ENG-MT-MV-ML-S-100 | 100% | 2026-01-22 | 2026-01-22 | Street Lighting( LED) Luminaire of Output ? 20,965 lumen complete with control gear and lamp, (129.1) WATT. | SL |
|  | 3 | **Distribution Panel Board** |  | 2026-02-21 | 2026-03-23 |  |  |  |  |  |  |
| ENG-MT-SL-DB-A-100 |  | Material Approval for Distrubution Panel Boards of Street Lighting Network | 0d | 2026-02-21 A | 2026-03-23 A | ENG-MT-SL-DB-S-100 | 100% | 2026-02-21 | 2026-02-21 | Street Lighting panels LCP (01) | SL |
|  | 4 | **Earthing System Works** |  | 2026-06-30 | 2026-06-30 |  |  |  |  |  |  |
| ENG-MT-SL-ES-A-100 |  | Material Approval for Lighting Earthing of Street Lighting Network | 0d | 2026-06-30 A | 2026-06-30 A | ENG-MT-SL-ES-S-100 SS | 100% |  |  | Including earthing of lighting poles, masts, feeder pillars, unit substations and LV feeders. | SL |
|  | 5 | **Termination and Testing Works** |  | 2026-06-30 | 2026-07-07 |  |  |  |  |  |  |
| ENG-MT-SL-TF-A-100 |  | Material Approval for Fuse Boxes of Street Lighting Network | 7d | 2026-06-30 A | 2026-07-07 A | ENG-MT-SL-TF-S-100 | 100% |  |  |  |  |
| ENG-MT-SL-TF-A-110 |  | Material Approval for Cable Lugs of Street Lighting Network | 7d | 2026-06-30 A | 2026-07-07 A | ENG-MT-SL-TF-S-110 | 100% |  |  |  |  |
|  | 8 | **Telecom Network** |  | 2026-01-17 | 2026-01-26 |  |  |  |  |  |  |
|  | MS | **Submission of Material** |  | 2026-01-17 | 2026-01-26 |  |  |  |  |  |  |
|  | 1 | **Ducts Works** |  | 2026-01-17 | 2026-01-26 |  |  |  |  |  |  |
| ENG-MT-TE-S-100 |  | Material Submittal for Ducts of Telecom Network | 9.25d | 2026-01-17 A | 2026-01-26 A | MS-CS-PS | 100% | 2026-01-17 | 2026-01-27 |  |  |
|  | 3 | **Manholes Works** |  | 2026-01-17 | 2026-01-26 |  |  |  |  |  |  |
| ENG-MT-TE-S-110 |  | Material Submittal for Manholes of Telecom Network | 9.25d | 2026-01-17 A | 2026-01-26 A | MS-CS-PS | 100% | 2026-01-17 | 2026-01-27 |  |  |

| ID | WBS | Activity | Duration | Start | Finish | Predecessors | Complete | Planned start | Planned finish | Resources | 01- Network | Displane | 13 BUILDINGS |
| --- | --- | --- | --- | --- | --- | --- | --- | --- | --- | --- | --- | --- | --- |
|  | 2 | **CCTV System Wroks** |  | 2026-01-17 | 2026-01-26 |  |  |  |  |  |  |  |  |
| ENG-MT-CTV-S-100 |  | Material Submittal for Civil and Finishes Works of CCTV Complete System | 9.25d | 2026-01-17 A | 2026-01-26 A | MS-CS-PS | 100% | 2026-01-17 | 2026-01-27 |  |  |  |  |
|  | MA | **Approval of Material** |  | 2026-01-17 | 2026-01-26 |  |  |  |  |  |  |  |  |
|  | 1 | **Ducts Works** |  | 2026-01-17 | 2026-01-26 |  |  |  |  |  |  |  |  |
| ENG-MT-TE-A-100 |  | Material Approval for Ducts of Telecom Network | 0d | 2026-01-17 A | 2026-01-26 A | ENG-MT-TE-S-100 SS, MS-CS-PS, ENG-MT-TE-S-100 FF | 100% | 2026-01-17 | 2026-01-17 | 2-ways ducts, 50mm diameter; 6-ways ducts, 110mm diameter; 9-ways ducts, 6 x 160mm & 2 x 100mm; 6 PVC ducts 150x200 mm (60mm diameter); 6 PVC ducts 600x800 mm (120mm diameter); 6 PVC ducts 800x800 mm (170mm diameter) | TE | TL |  |
|  | 3 | **Manholes Works** |  | 2026-01-17 | 2026-01-26 |  |  |  |  |  |  |  |  |
| ENG-MT-TE-A-110 |  | Material Approval for Manholes of Telecom Network | 0d | 2026-01-17 A | 2026-01-26 A | ENG-MT-TE-S-110 SS, MS-CS-PS, ENG-MT-TE-S-110 FF | 100% | 2026-01-17 | 2026-01-17 | Manhole Type 2 (1600 x 1600 x 2000); Manhole Type 3 (1200 x 1200 x 2000) | TE |  |  |
|  | 2 | **CCTV System Wroks** |  | 2026-01-17 | 2026-01-26 |  |  |  |  |  |  |  |  |
| ENG-MT-CTV-A-100 |  | Material Approval for Civil and Finishes Works of CCTV Complete System | 0d | 2026-01-17 A | 2026-01-26 A | ENG-MT-CTV-S-100 SS, MS-CS-PS, ENG-MT-CTV-S-100 FF | 100% | 2026-01-17 | 2026-01-17 | 6 PVC ducts 200x150 mm (60mm diameter); 2-ways ducts, 50mm diameter | TE |  |  |
|  | 1 | **Superstructure Works** |  | 2026-01-15 | 2026-10-13 |  |  |  |  |  |  |  |  |
|  | SL1111 | **Pump Stations** |  | 2026-01-17 | 2026-01-28 |  |  |  |  |  |  |  |  |
|  | 1 | **Submission of Material** |  | 2026-01-17 | 2026-01-26 |  |  |  |  |  |  |  |  |
| ENG-MT-PS-CV-S-140 |  | Material Submittal for Civil Works for Sewage Pump Stations | 9.25d | 2026-01-17 A | 2026-01-26 A | MS-CS-PS SS | 100% | 2026-01-17 | 2026-01-27 |  |  |  |  |
|  | 2 | **Approval of Material** |  | 2026-01-18 | 2026-01-28 |  |  |  |  |  |  |  |  |
| ENG-MT-PS-CV-A-150 |  | Material Approval for Civil Works for Sewage Pump Stations | 0d | 2026-01-18 A | 2026-01-28 A | ENG-MT-PS-CV-S-140 | 100% | 2026-01-18 | 2026-01-18 | Price | UB |  | PUMP |
|  | SL | **Lift Station** |  | 2026-01-17 | 2026-01-28 |  |  |  |  |  |  |  |  |
|  | 1 | **Submission of Material** |  | 2026-01-17 | 2026-01-27 |  |  |  |  |  |  |  |  |
| ENG-MT-SLS-CV-S-100 |  | Material Submittal for Civil Works for Lift Stations | 10.25d | 2026-01-17 A | 2026-01-27 A | MS-CS-PS SS | 100% | 2026-01-17 | 2026-01-28 |  |  |  |  |
|  | 2 | **Approval of Material** |  | 2026-01-17 | 2026-01-28 |  |  |  |  |  |  |  |  |
| ENG-MT-SLS-CV-A-110 |  | Material Approval for Civil Works for Sewage Lift Stations | 0d | 2026-01-17 A | 2026-01-28 A | ENG-MT-SLS-CV-S-100 | 100% | 2026-01-17 | 2026-01-17 | Price | UB |  | LIFT |
|  | TE | **Storm Drainage Ponds** |  | 2026-02-08 | 2026-02-17 |  |  |  |  |  |  |  |  |
|  | 1 | **Submission of Material** |  | 2026-02-08 | 2026-02-10 |  |  |  |  |  |  |  |  |
| ENG-MT-DPO-CV-S-100 |  | Material Submittal for Civil Works for Storm Drainage Ponds | 3.25d | 2026-02-08 A | 2026-02-10 A | ENG-MT-PS-CV-A-150 SS | 100% | 2026-02-08 | 2026-02-11 |  |  |  |  |
|  | 2 | **Approval of Material** |  | 2026-02-10 | 2026-02-17 |  |  |  |  |  |  |  |  |
| ENG-MT-DPO-CV-A-110 |  | Material Approval for Civil Works for Storm Drainage Ponds | 0d | 2026-02-10 A | 2026-02-17 A | ENG-MT-DPO-CV-S-100 | 100% | 2026-02-10 | 2026-02-10 | Finished grouted riprap for Pond 300mm as per drawings | UB |  |  |

| ID | WBS | Activity | Duration | Start | Finish | Predecessors | Complete | Planned start | Planned finish | Total float | Free float | Resources | 01- Network | 13 BUILDINGS |
| --- | --- | --- | --- | --- | --- | --- | --- | --- | --- | --- | --- | --- | --- | --- |
|  | SL111 | **Storage Tank (TSE)** |  | 2026-02-04 | 2026-10-13 |  |  |  |  |  |  |  |  |  |
|  | 1 | **Submission of Material** |  | 2026-10-06 | 2026-10-13 |  |  |  |  |  |  |  |  |  |
| ENG-MT-TSE-CV-S-130 |  | Material Submittal for Civil Works for Storage Tank (TSE) | 7d | 2026-10-06 | 2026-10-13 | ENG-MT-SLS-CV-S-100 |  |  |  | -75.75d | 0d |  |  |  |
|  | 2 | **Approval of Material** |  | 2026-02-04 | 2026-02-09 |  |  |  |  |  |  |  |  |  |
| ENG-MT-TSE-CV-A-140 |  | Material Approval for Civil Works for Storage Tank (TSE) | 0d | 2026-02-04 A | 2026-02-09 A | ENG-MT-SLS-CV-S-100 | 100% | 2026-02-04 | 2026-02-04 |  |  | Glass Fused Bolted (GLS) 1500 m3 Tank with associated accessories & manufacturer recommendation for the foundation | PW |  |
|  | SL11 | **Gaurd Room** |  | 2026-02-09 | 2026-02-17 |  |  |  |  |  |  |  |  |  |
|  | 1 | **Submission of Material** |  | 2026-02-09 | 2026-02-10 |  |  |  |  |  |  |  |  |  |
| ENG-MT-GR-CV-S-120 |  | Material Submittal for Civil Works for Gaurd Room | 2.25d | 2026-02-09 A | 2026-02-10 A | MS-CS-PS SS | 100% | 2026-02-09 | 2026-02-11 |  |  |  |  |  |
|  | 2 | **Approval of Material** |  | 2026-02-10 | 2026-02-17 |  |  |  |  |  |  |  |  |  |
| ENG-MT-GR-CV-A-130 |  | Material Approval for Civil Works for Gaurd Room | 0d | 2026-02-10 A | 2026-02-17 A | ENG-MT-GR-CV-S-120 | 100% | 2026-02-10 | 2026-02-10 |  |  | Slab on Grade; Slabs; Lightweight Concrete Roof insulation as per Architect's specification; Insulated brickwork. with expanded polystyrene 200mm thick; vertical straight wall complete with accessories .; Common brickwork. 150mm thick; vertical straight wall complete with accessories.; 2 perpendicular layers of cold bitumen coats; 2 layer of 4mm HDPE membrane, 2 perpendicular layers cold bitumen coats; 1 layer EPOXY Paint 300 micron; Membrane fully bonded to prime deck and upstand; Geotextile Filter membrane uv resistance; 85mm thick thermal insulation; 1.5mm thick epdm waterproofing membrane; CW01 - 4500 mm width x 3700 mm height; CW02 - 4500 mm width x 3700 mm height; CW03 - 4500 mm width x 3700 mm height; CW04 - 4500 mm width x 3700 mm height; CW05 - 7500 mm width x 4250 mm height; CW06 - 7500 mm width x 4250 mm height; W01 - 1000 mm width x 2000 mm height; W02 - 2000 mm width x 2000 mm height; W03 - 2000 mm width x 1000 mm height; D2 - 900 mm x 2200 mm height temper door; D3 - 950 mm x 2000 mm height temper door; Supply and install 300*300mm terrazzo tiles with 150mm high skirting at perimeter with approv; Supply and install 300*300mm glazed ceramic wall tiles on cement mortar and including rough; Supply and install internal plastering and 2 coats of acrylic paint at walls includin; Supply and install 300*300mm glazed ceramic wall tiles on cement mortar and including rough and smooth p; Supply and install 600*600mm porcelain tiles with approved quality on 30 mm mortar inclu; Supply and install 12.5mm thk, gypsum board suspended ceiling including s; Office Chairs; Office Tables; Guard Stand; Magnetic Control Access barrier, Automatic Vehicular Barriers to be installed on ground with magnetic access; Supply and install Hand Wash Basin with Water Tap, angle valve, P-trap connected to 50mm diameter s; Supply and install paper towel dispenser, surface mounted, satin finish stainless steel as per approv; Supply and install mirror, size 460*910mm as per approved sample including frames, backing and all accessories to complete.; Supply and install towel ring , surface mounted, satin finish stainless steel as per approved sample including accessories.; Kitchen sink with single bowl with hot/cold water mixer.; Supply and install Base mounted flush tank water Western water closet system with lid connected to 110mm soil pipe; Gate Valves; Slow Closing Valve; 1 meter length 10mm diameter Flexible Hose with insulated handle complete with fork support, index push, vacuum breaker; 50mm diameter; 75mm diameter; 80mm diameter; 100mm diameter; 110mm diameter; 13mm diameter; 15mm diameter; 20mm diameter; 25mm diameter; 32mm diameter; 40mm diameter; Isolation Valve Size 20; Isolation Valve Size 25; Isolation Valve Size 32; Isolation Valve Size 40; Isolation Valve Size 50; 20 mm diameter spray head for cold water supply; Supply and install Electric Water Heater set with connection; Water meter complete with accessories.; Roof drain; Vent on a roof to exhaust air; Floor drain 100x80mm; Gully trap 300x300 mm; inspection chamber, size 800x900x1000; Mini split actual capacity 2 Ton; Ducted split actual capacity 4 Ton; Supply, fabricate, install and testing factory fabricated metal ducts with flanges complete with supports, vanes,; Supplying, installation testing & commissioning of external insulation on ducts; Supply, fix, testing and commissioning of exhaust air/fresh air louvers of powder coated extruded aluminium construction.; Providing, fixing, testing and commissioning of powder coated extruded aluminum sections grills and diffusers with dampers.; Air Grills 150mm x150mm; Air Diffuser 600mm x 600mm; Supply, Installation & Testing of 2 hours Fire rated system for closing the openings between roo; 4.5 KG CO2 Type Fire Extinguishers; 6 KG ABC Type Fire Extinguishers; Floor cleanout, size 75 mm diameter; Floor cleanout, size 110 mm diameter; GRP water tanks capacity of each 1000 liter complete with all fittings, all valves and concrete pad; Guard Room 1; Guard Room 2; Guard Room 3; 30A, 2P AC Disconnect Switch; 20A Duplex Receptacle Floor Mounted; Twin Socket outlet; Twin Socket outlet, Weather Proof; Single gang Lighting switch; 2way Single gang Lighting switch; 36W LED linear Pendant lighting; 36W LED Emergency linear Pendant lighting; 13W recess mounted LED down light fitting; 13W recess emergency mounted LED down light fitting with 1.5 Hr Battery; 10.4W LED Exit light with 1.5 Hr Battery; 4mm2 Cu./FRLSZH Cable; 6mm2 Cu./FRLSZH Cable; 8 Port Industrial PoE Switch 10/100BaseT (0 deg to +70 deg. Celsius); 06C Optical Fiber SM; 48C Optical Fiber SM; 48 Core Splice Closure; Boom Barrier at Security Guard Room; Pedestrian turnstile at Security Guard Room; Access Control Unit; Access Card Reader; Magnetic Lock; Break Glass; Exit Push button; Door Sensor; Biometrics Reader; Pole/Bollard mounted IP( PoE), Automatic Number Plate Recognition (ANPR, camera, 5MP,IP 66, IR illumin; 12U rack dimension (W x H x L) 600 x 625 x 600 mm; Fire Alarm Control panel with fire alarm zoning with Mimic panel with fire alarm zoning; Main Fire Alarm Control panel with fire alarm zoning with Mimic panel with fire alarm zoning; Supply and installation of the addressable manual call point with operation safety glass breaking and pushbutton; Supply and installation of the photoelectric heat & smoke detector with base; Sounder With Beacon; Addressable Control module for Sounders; Addressable Control module for HVAC System; Addressable Monitor module for HVAC System; 2C x 1.5 Sqm FR Rated Armored - Cable For Loop Wiring; DACT (Auto - Dailer) for 24x7 Civil Defence; Transmission Communication cable - Fiber Optics 12Core; Transmission Communication cable - Ethernet Cable; Supply, install to site and installation of power supply system for fire alarm control panel; Supply, install to site and installation of power cable; Fire Fighter’s Telephone Centre; Fireman’s Telephone Jack; Voice Command Center | GR&FE |  |
|  | SL1 | **Fence** |  | 2026-01-15 | 2026-03-03 |  |  |  |  |  |  |  |  |  |
|  | 1 | **Submission of Material** |  | 2026-01-15 | 2026-02-28 |  |  |  |  |  |  |  |  |  |
| ENG-MT-FE-CV-S-110 |  | Material Submittal for Civil Works for Fence | 35.12d | 2026-01-15 A | 2026-02-28 A | MS-CS-PS SS | 100% | 2026-01-15 | 2026-03-01 |  |  |  |  |  |
|  | 2 | **Approval of Material** |  | 2026-01-22 | 2026-03-03 |  |  |  |  |  |  |  |  |  |
| ENG-MT-FE-CV-A-120 |  | Material Approval for Civil Works for Fence | 0d | 2026-01-22 A | 2026-03-03 A | ENG-MT-FE-CV-S-110 | 100% | 2026-01-22 | 2026-01-22 |  |  | 100 mm thickness lean concrete under the foundation; Foundation; Walls; Beams; Columns; Common brickwork. 300mm thick; vertical straight wall complete with accessories.; Two Layers of Bituminous Coating; 20x20 Approved Polysulfide Joint Sealant; Supply and install 33mm thick Lexan cladding blue complete with necessary framings; Supply and install 50mm thick random cut stone cladding complete with 600m; Supply and install External plastering to walls and columns min. 15mm thick with cement mortar of specified grade including; Supply and install 2 coats of weatherproof paint at walls including one prime coat and; Guard room coping 350mm; Guard room coping 450mm; Stone coping 500mm; Stone coping 525mm; Supply and install MODON Signage with Logo Type 1; Supply and install MODON Signage Type 2; Supply and install "Triangle Style" signage; Junction Box for lighting fixture; Trench excavation to receive 2 nos 50mm diameter PVC Conduit, sand bedding and embedded with sa; Supply, Install, fixings, testing and commissioning 80W LED Projector waterproof DJ effect light including c; Earth Pit; Grounding rod 20mmX3m; Grounding rod with Pit 20mmX3m; Earthing Bar; 120mm2 Tinned copper wire; IR Intrusion Detection System Quad Beams (Tx & Rx) (SL-350 QDM); Control cable; CAT6A cable; Field Equipment Cabinet enclosed outdoor complete with precast concrete footing, suitable for parame; Supply and install 800mm x 800mm x 800mm height concrete handhole with bituminous paint all aroun; 800mm depth minimum Trench excavation to receive 3 nos 50mm diameter PVC Conduit with spacer, sand bedding an; Hot dipped galvanized cable conduits for CAT6A cable and Control Cables embedded to wall; 400V, 3PH, 60Hz lighting control panel (LCP-02); 38W, 230V, 1PH, 60Hz fence, led linear uplight lighting, IP66; 4C-16mm2 CU/XLPE/PVC direct buried armored cable; 4C-10mm2 CU/XLPE/PVC direct buried armored cable; 16mm2 CU/PVC wire; 10mm2 CU/PVC wire | GR&FE |  |
|  | SL12 | **Softscape and Planting Works** |  | 2026-02-28 | 2026-03-08 |  |  |  |  |  |  |  |  |  |
|  | 1 | **Submission of Material** |  | 2026-02-28 | 2026-03-01 |  |  |  |  |  |  |  |  |  |
| ENG-MT-PL-CV-S-150 |  | Material Submittal for Softscape and Planting Works | 1.25d | 2026-02-28 A | 2026-03-01 A | MS-CS-PS | 100% |  |  |  |  |  |  |  |
|  | 2 | **Approval of Material** |  | 2026-03-01 | 2026-03-08 |  |  |  |  |  |  |  |  |  |
| ENG-MT-PL-CV-A-160 |  | Material Approval for Softscape and Planting Works | 0d | 2026-03-01 A | 2026-03-08 A | ENG-MT-PL-CV-S-150 SS, ENG-MT-PL-CV-S-150 FF | 100% | 2026-03-01 | 2026-03-01 |  |  | Price | UB | LS |
|  | 1 | **Long Lead Time Items** |  | 2026-01-15 | 2026-10-14 |  |  |  |  |  |  |  |  |  |
|  | 1 | **Infrastructure Networks** |  | 2026-01-15 | 2026-01-22 |  |  |  |  |  |  |  |  |  |
|  | 2 | **CCTV System Wroks of Telecom Network** |  | 2026-01-15 | 2026-01-22 |  |  |  |  |  |  |  |  |  |
|  | 1 | **Submission of Material** |  | 2026-01-15 | 2026-01-18 |  |  |  |  |  |  |  |  |  |
| ENG-MT-CTV-S-110 |  | Material Submittal for Low Current Works of CCTV Complete System with All Accessories | 3.25d | 2026-01-15 A | 2026-01-18 A | ENG-SH-RD-S-100 | 100% | 2026-01-15 | 2026-01-19 |  |  |  |  |  |

| ID | WBS | Activity | Duration | Start | Finish | Predecessors | Complete | Planned start | Planned finish | Total float | Free float | Resources | Actual cost | 01- Network |
| --- | --- | --- | --- | --- | --- | --- | --- | --- | --- | --- | --- | --- | --- | --- |
|  | 2 | **Approval of Material** |  | 2026-01-18 | 2026-01-22 |  |  |  |  |  |  |  |  |  |
| ENG-MT-CTV-A-110 |  | Material Approval for Low Current Works of CCTV Complete System with All Accessories | 0d | 2026-01-18 A | 2026-01-22 A | ENG-MT-CTV-S-110 SS, ENG-MT-CTV-S-110 FF | 100% | 2026-01-18 | 2026-01-18 |  |  | NVR Server with RAID (5, 6 or 10) to record all cameras storage 80TB with all hardware / software / licenses etc.; VMS Server with RAID (5, 6 or 10) complete Hardware / Software with one Color Laser Printer and all associated; Licenses for Cameras, Workstations and Keyboards; Work Station (MMI with two monitors each, for Monitoring for CCTV & ACS); Keyboard with joystick for CCTV with all accessories as per specification; Pole mounted IP( PoE) Fixed camera, 5MP,IP 66, IR illumination, 3-8mm varifocal, auto iris lens type; Wall mounted IP( PoE) Fixed camera, 5MP,IP 66, IR illumination, 3-8mm varifocal, auto iris lens type; 5MP Dome camera ceiling Mounted IP (PoE) indoor; 5MP PTZ Multi Sensor Camera IP(PoE) 360 Degree View Outdoor with accessories (IP 66); 8 Port Industrial PoE Switch 10/100BaseT (0 deg to +70 deg. Celsius); Filed Equipment cabinet (FEC), with fan and ventilation, NEMEX 4X ,door, minimum size (600x600x400mm); IP Phone Communication server (hot standby) 50 Port equipped, Gateway, Gatekeeper, H.323, SIP, redundant Power etc.; IP Phone Voice gateway; Voice IP Phone; NMS Server for IP phone and NETWORK Elements; NMS Workstation; Firm Ware, software & licenses; Data Cable; Power Cable; Layer 3, 24 Port non-PoE switch10/1000BaseT/LX (-40 deg to +70 deg. Celsius), stack module and associated; Layer 2, 24 Port non-PoE switch10/1000BaseT (-40 deg to +70 deg. Celsiu; Network Management System Server; Network Management System workstation; 42U rack dimension (W x H x L) 800 x 2000 x 1000 mm; 12U rack dimension (W x H x L) 600 x 625 x 600 mm; 06C Optical Fiber SM; 48C Optical Fiber SM; 48 Core Splice Closure; Optical fiber patch cord 5m; Data Cable (STP CAT 6A); 3C Power Cable armored 1.5mm2; 3C Power Cable armored 2.5 mm2; UTP CAT6A Patch Cord 1m/3m/5m; Access Control Unit; Access Card Reader; Magnetic Lock; Break Glass; Exit Push button; Door Sensor; Biometrics Reader; Smart Card Printer; Card Issue Work Station; Photographic Camera with stand; Interface modules with CCTV, Fire and other systems | 98,056.59 | TE |
|  | 2 | **Superstructure Works** |  | 2026-10-06 | 2026-10-14 |  |  |  |  |  |  |  |  |  |
|  | SL | **Pump Stations** |  | 2026-10-06 | 2026-10-14 |  |  |  |  |  |  |  |  |  |
|  | 1 | **Submission of Material** |  | 2026-10-06 | 2026-10-13 |  |  |  |  |  |  |  |  |  |
| ENG-MT-SPS-MC-S-100 |  | Material Submittal for Electromechanical Works for Pump Stations | 7d | 2026-10-06 | 2026-10-13 | ENG-SH-SPS-S-150_R SS, ENG-SH-SPS-S-150_R FF |  |  |  | -70d | 0d |  |  |  |
|  | 2 | **Approval of Material** |  | 2026-10-06 | 2026-10-14 |  |  |  |  |  |  |  |  |  |
| ENG-MT-SPS-MC-A-110 |  | Material Approval for Electromechanical Works for Pump Stations | 8d | 2026-10-06 | 2026-10-14 | ENG-MT-SPS-MC-S-100 SS, ENG-MT-SPS-MC-S-100 FF |  |  |  | -70d | 0d |  |  |  |
|  | SL1 | **Storage Tank (TSE)** |  | 2026-10-06 | 2026-10-14 |  |  |  |  |  |  |  |  |  |
|  | 1 | **Submission of Material** |  | 2026-10-06 | 2026-10-13 |  |  |  |  |  |  |  |  |  |
| ENG-MT-TSE-MC-S-110 |  | Material Submittal for Electromechanical Works for Storage Tank (TSE) | 7d | 2026-10-06 | 2026-10-13 | ENG-MT-SPS-MC-S-100 SS, ENG-MT-SPS-MC-S-100 FF |  |  |  | -70d | 0d |  |  |  |
|  | 2 | **Approval of Material** |  | 2026-10-06 | 2026-10-14 |  |  |  |  |  |  |  |  |  |
| ENG-MT-TSE-MC-A-120 |  | Material Approval for Electromechanical Works for Storage Tank (TSE) | 8d | 2026-10-06 | 2026-10-14 | ENG-MT-TSE-MC-S-110 SS, ENG-MT-TSE-MC-S-110 FF |  |  |  | -70d | 0d |  |  |  |
|  | PROC | **Procurement Cycle** |  | 2026-01-28 | 2027-05-03 |  |  |  |  |  |  |  |  |  |
|  | NLL | **Short Lead Time Items** |  | 2026-01-28 | 2027-05-03 |  |  |  |  |  |  |  |  |  |
|  | INF | **Infrastructure Networks** |  | 2026-01-28 | 2027-05-03 |  |  |  |  |  |  |  |  |  |
|  | RD | **Road Works** |  | 2026-06-23 | 2026-10-06 |  |  |  |  |  |  |  |  |  |
|  | PO | **Issuance of Purchase Orders** |  | 2026-06-23 | 2026-07-30 |  |  |  |  |  |  |  |  |  |
|  | 1 | **Road Works** |  | 2026-06-23 | 2026-07-22 |  |  |  |  |  |  |  |  |  |
| PRO-RD-PO-100 |  | Issuance of Purchase Order for Subgrade of Road Works | 7d | 2026-06-23 A | 2026-06-30 A | ENG-MT-RD-A-100 | 100% |  |  |  |  |  |  |  |
| PRO-RD-PO-110 |  | Issuance of Purchase Order for Aggregate Base Course of Road Works | 7d | 2026-06-23 A | 2026-06-30 A | ENG-MT-RD-A-110 | 100% |  |  |  |  |  |  |  |
| PRO-RD-PO-120 |  | Issuance of Purchase Order for Prime Coat of Road Works | 7d | 2026-07-15 A | 2026-07-22 A | ENG-MT-RD-A-120, ENG-MT-SW-TF-A-100 | 100% |  |  |  |  |  |  |  |
| PRO-RD-PO-130 |  | Issuance of Purchase Order for Bituminous Base & Wearing Courses of Road Works | 7d | 2026-07-15 A | 2026-07-22 A | ENG-MT-RD-A-130, ENG-MT-SW-TF-A-100 | 100% |  |  |  |  |  |  |  |
|  | 2 | **Pavement Works** |  | 2026-07-23 | 2026-07-30 |  |  |  |  |  |  |  |  |  |
| PRO-RD-PO-140 |  | Issuance of Purchase Order for Interlock Tiles of Landscaping | 7d | 2026-07-23 A | 2026-07-30 A | ENG-MT-RD-A-140, PRO-RD-PO-130 | 100% |  |  |  |  |  |  |  |
| PRO-RD-PO-150 |  | Issuance of Purchase Order for Curbstones of Landscaping | 7d | 2026-07-23 A | 2026-07-30 A | ENG-MT-RD-A-150, PRO-RD-PO-130 | 100% |  |  |  |  |  |  |  |

| ID | WBS | Activity | Duration | Start | Finish | Predecessors | Complete | Planned start | Planned finish | Calendar |
| --- | --- | --- | --- | --- | --- | --- | --- | --- | --- | --- |
|  | 3 | **Traffic Signs Boards and Roads Marking** |  | 2026-07-05 | 2026-07-21 |  |  |  |  |  |
| PRO-RD-PO-160 |  | Issuance of Purchase Order for Traffic Signs Boards of Road Works | 7d | 2026-07-05 A | 2026-07-13 A | ENG-MT-TS-A-100, ENG-SH-TSB-A-100 | 100% |  |  |  |
| PRO-RD-PO-170 |  | Issuance of Purchase Order for Road Markings of Road Works | 7d | 2026-07-13 A | 2026-07-21 A | ENG-MT-TS-A-110, ENG-MT-TS-S-110, ENG-SH-MRK-A-110 | 100% |  |  |  |
|  | MF | **Manufacturing of Material** |  | 2026-07-01 | 2026-08-18 |  |  |  |  |  |
|  | 1 | **Road Works** |  | 2026-07-01 | 2026-08-18 |  |  |  |  |  |
| PRO-RD-MF-100 |  | Manufacturing of Subgrade for Road Works | 110d | 2026-07-01 A | 2026-08-18 A | PRO-RD-PO-100 | 100% | 2026-07-01 | 2026-10-18 | PROCUREMENT MODON3 |
| PRO-RD-MF-110 |  | Manufacturing of Aggregate Base Course for Road Works | 120d | 2026-07-01 A | 2026-08-18 A | PRO-RD-PO-110 | 100% | 2026-07-01 | 2026-10-28 | PROCUREMENT MODON3 |
| PRO-RD-MF-120 |  | Manufacturing of Prime Coat for Road Works | 120d | 2026-07-23 A | 2026-08-18 A | PRO-RD-PO-120 | 100% | 2026-07-23 | 2026-11-19 | PROCUREMENT MODON3 |
| PRO-RD-MF-130 |  | Manufacturing of Bituminous Base & Wearing Courses for Road Works | 120d | 2026-07-23 A | 2026-08-18 A | PRO-RD-PO-130 | 100% | 2026-07-23 | 2026-11-19 | PROCUREMENT MODON3 |
|  | 2 | **Pavement Works** |  | 2026-07-31 | 2026-08-18 |  |  |  |  |  |
| PRO-RD-MF-140 |  | Manufacturing of Interlock Tiles for Landscaping | 90d | 2026-07-31 A | 2026-08-18 A | PRO-RD-PO-140 | 100% | 2026-07-31 | 2026-10-28 | PROCUREMENT MODON3 |
| PRO-RD-MF-150 |  | Manufacturing of Curbstones for Landscaping | 90d | 2026-07-31 A | 2026-08-18 A | PRO-RD-PO-150 | 100% | 2026-07-31 | 2026-10-28 | PROCUREMENT MODON3 |
|  | 3 | **Traffic Signs Boards and Roads Marking** |  | 2026-07-13 | 2026-08-18 |  |  |  |  |  |
| PRO-RD-MF-160 |  | Manufacturing of Traffic Signs Boards for Road Works | 100d | 2026-07-13 A | 2026-08-18 A | PRO-RD-PO-160 | 100% | 2026-07-13 | 2026-10-21 | PROCUREMENT MODON3 |
| PRO-RD-MF-170 |  | Manufacturing of Road Markings for Road Works | 105d | 2026-07-21 A | 2026-08-18 A | PRO-RD-PO-170 | 100% | 2026-07-21 | 2026-11-03 | PROCUREMENT MODON3 |
|  | 1DL | **1st Material Delivery & Site Inspection** |  | 2026-08-02 | 2026-09-01 |  |  |  |  |  |
|  | 1 | **Road Works** |  | 2026-08-02 | 2026-09-01 |  |  |  |  |  |
| PRO-RD-1DL-100 |  | 1ST Material Delivery for Subgrade of Road Works | 12d | 2026-08-02 A | 2026-09-01 A | PRO-RD-MF-100 | 100% | 2026-10-19 | 2026-11-01 |  |
| PRO-RD-1DL-110 |  | 1ST Material Delivery for Aggregate Base Course of Road Works | 12d | 2026-08-02 A | 2026-09-01 A | PRO-RD-MF-110 | 100% | 2026-10-29 | 2026-11-11 |  |
| PRO-RD-1DL-120 |  | 1ST Material Delivery for Prime Coat of Road Works | 12d | 2026-08-02 A | 2026-09-01 A | PRO-RD-MF-120 | 100% | 2026-11-21 | 2026-12-03 |  |
| PRO-RD-1DL-130 |  | 1ST Material Delivery for Bituminous Base & Wearing Courses of Road Works | 12d | 2026-08-02 A | 2026-09-01 A | PRO-RD-MF-130 | 100% | 2026-11-21 | 2026-12-03 |  |
|  | 2 | **Pavement Works** |  | 2026-08-02 | 2026-09-01 |  |  |  |  |  |
| PRO-RD-1DL-140 |  | 1ST Material Delivery for Interlock Tiles of Landscaping | 12d | 2026-08-02 A | 2026-09-01 A | PRO-RD-MF-140 | 100% | 2026-10-29 | 2026-11-11 |  |
| PRO-RD-1DL-150 |  | 1ST Material Delivery for Curbstones of Landscaping | 12d | 2026-08-02 A | 2026-09-01 A | PRO-RD-MF-150 | 100% | 2026-10-29 | 2026-11-11 |  |

| ID | WBS | Activity | Duration | Start | Finish | Predecessors | Complete | Remaining | Planned start | Planned finish | Total float | Free float | Calendar | Resources | 01- Network |
| --- | --- | --- | --- | --- | --- | --- | --- | --- | --- | --- | --- | --- | --- | --- | --- |
|  | 3 | **Traffic Signs Boards and Roads Marking** |  | 2026-08-02 | 2026-09-01 |  |  |  |  |  |  |  |  |  |  |
| PRO-RD-1DL-160 |  | 1ST Material Delivery for Traffic Signs Boards of Road Works | 15d | 2026-08-02 A | 2026-09-01 A | PRO-RD-MF-160 | 100% |  | 2026-10-21 | 2026-11-08 |  |  |  |  |  |
| PRO-RD-1DL-170 |  | 1ST Material Delivery for Road Markings of Road Works | 15d | 2026-08-02 A | 2026-09-01 A | PRO-RD-MF-170, PRO-RD-1DL-160 | 100% |  | 2026-11-08 | 2026-11-25 |  |  |  |  |  |
|  | DL | **Material Delivery & Site Inspection** |  | 2026-08-02 | 2026-10-06 |  |  |  |  |  |  |  |  |  |  |
|  | 1 | **Pre-Bituminous Construction** |  | 2026-08-02 | 2026-10-06 |  |  |  |  |  |  |  |  |  |  |
| PRO-R25-RD-DL-100 |  | Material Delivery & Site Inspection for Subgrade of Road Works | 0d | 2026-08-02 A | 2026-10-06 | PRO-RD-MF-100, PRO-RD-1DL-100 | 30% | 0d | 2026-11-02 | 2026-11-02 | 50.5d | 135.5d |  | Subgrade | RD |
| PRO-R25-RD-DL-110 |  | Material Delivery & Site Inspection for Aggregate Base Course of Road Works | 0d | 2026-10-06 | 2026-10-06 | PRO-RD-MF-110 SS, PRO-RD-MF-110, PRO-RD-1DL-110 |  |  |  |  | 64d | 149d |  | Aggregate base course | RD |
|  | 4 | **Bituminous Construction** |  | 2026-10-06 | 2026-10-06 |  |  |  |  |  |  |  |  |  |  |
| PRO-R25-RD-DL-160 |  | Material Delivery & Site Inspection for Prime Coat of Road Works | 0d | 2026-10-06 | 2026-10-06 | PRO-RD-MF-120, PRO-RD-MF-120 FF, PRO-RD-1DL-120 |  |  |  |  | 79d | 163d |  | Bituminous base course (Grading I - Class A), including Prime Coat (MC1) | RD |
| PRO-R25-RD-DL-170 |  | Material Delivery & Site Inspection for Bituminous Base & Wearing Courses of Road Works | 0d | 2026-10-06 | 2026-10-06 | PRO-RD-MF-130, PRO-RD-1DL-130 |  |  |  |  | 86d | 170d |  | Bituminous concrete wearing course, (Grading I - Class A), including tack coat (RC2) | RD |
|  | 2 | **Pavement Works** |  | 2026-10-06 | 2026-10-06 |  |  |  |  |  |  |  |  |  |  |
| PRO-R25-RD-DL-120 |  | Material Delivery & Site Inspection of Interlock Tiles for Landscaping | 0d | 2026-10-06 | 2026-10-06 | PRO-RD-MF-140 SS, PRO-RD-MF-140, PRO-RD-1DL-140 |  |  |  |  | 77d | 161.2d |  | 60mm thick; 80mm thick | RD |
| PRO-R25-RD-DL-130 |  | Material Delivery & Site Inspection of Curbstones for Landscaping | 0d | 2026-10-06 | 2026-10-06 | PRO-RD-MF-150, PRO-RD-1DL-150 |  |  |  |  | 64.8d | 149d |  | Precast Concrete Curbstone 150X300X900 Type (K1-A); Precast Concrete Curbstone 100X200X500 Type (K4); Precast Concrete Curbstone 150X300X500 Type (K1-B); Precast Concrete Curbstone Type (K1-C); Flush Kerb Type (D) | RD |
|  | 3 | **Traffic Signs Boards and Roads Marking** |  | 2026-10-06 | 2026-10-06 |  |  |  |  |  |  |  |  |  |  |
| PRO-R25-RD-DL-140 |  | Material Delivery & Site Inspection of Traffic Signs Boards For Road Works | 0d | 2026-10-06 | 2026-10-06 | PRO-RD-MF-160, PRO-RD-1DL-160 |  |  |  |  | 103d | 184d |  | Traffic signs, ground mounted, Sheet Aluminum, (breakaway) Single post IPE, with all accessories; Precast Concrete Blister Warning Tactile Paver Brown Finish 300*300*60mm | RD |
| PRO-R25-RD-DL-150 |  | Material Delivery & Site Inspection of Road Markings For Road Works | 0d | 2026-10-06 | 2026-10-06 | PRO-RD-MF-170, PRO-RD-1DL-170 |  |  |  |  | 96d | 177d |  | Retroreflective Thermoplastic White Traffic lines; Retroreflective Thermoplastic Yellow, Traffic lines | RD |
|  | IR1 | **Softscape and Planting Works** |  | 2026-10-06 | 2027-02-04 |  |  |  |  |  |  |  |  |  |  |
|  | PO | **Issuance of Purchase Orders** |  | 2026-10-06 | 2026-10-12 |  |  |  |  |  |  |  |  |  |  |
|  | 1 | **Main Line Pipes** |  | 2026-10-06 | 2026-10-12 |  |  |  |  |  |  |  |  |  |  |
| PRO-IR-PO-140 |  | Issuance of Purchase Order for Softscape and Planting Works | 6d | 2026-10-06 | 2026-10-12 | ENG-MT-IR-ML-A-140 |  |  |  |  | -59.75d | 0d |  |  |  |
| PRO-IR-PO-150 |  | Issuance of Purchase Order for Site Furnishings (Seating Bench,Stone Boulders and Gravel) | 6d | 2026-10-06 | 2026-10-12 | ENG-MT-IR-ML-A-150 |  |  |  |  | -56.75d | 0d |  |  |  |
|  | MF | **Manufacturing of Material** |  | 2026-10-13 | 2027-01-10 |  |  |  |  |  |  |  |  |  |  |
|  | 1 | **Main Line Pipes** |  | 2026-10-13 | 2027-01-10 |  |  |  |  |  |  |  |  |  |  |
| PRO-IR-MF-140 |  | Manufacturing of Softscape and Planting Works | 90d | 2026-10-13 | 2027-01-10 | PRO-IR-PO-140 |  |  |  |  | -71d | 0d | PROCUREMENT MODON3 |  |  |
| PRO-IR-MF-150 |  | Manufacturing of Valves for Site Furnishings (Seating Bench,Stone Boulders and Gravel) | 90d | 2026-10-13 | 2027-01-10 | PRO-IR-PO-150 |  |  |  |  | -68d | 0d | PROCUREMENT MODON3 |  |  |

| ID | WBS | Activity | Duration | Start | Finish | Predecessors | Complete | Total float | Free float | Calendar |
| --- | --- | --- | --- | --- | --- | --- | --- | --- | --- | --- |
|  | 1DL | **1st Material Delivery & Site Inspection** |  | 2027-01-11 | 2027-01-17 |  |  |  |  |  |
|  | 1 | **Main Line Pipes** |  | 2027-01-11 | 2027-01-17 |  |  |  |  |  |
| PRO-IR-1DL-140 |  | 1ST Material Delivery for Softscape and Planting Works | 6d | 2027-01-11 | 2027-01-17 | PRO-IR-MF-140 |  | -61d | 0d |  |
| PRO-IR-1DL-150 |  | 1ST Material Delivery for Site Furnishings (Seating Bench,Stone Boulders and Gravel) | 6d | 2027-01-11 | 2027-01-17 | PRO-IR-MF-150 |  | -58d | 0d |  |
|  | DL | **Material Delivery & Site Inspection** |  | 2027-01-18 | 2027-02-04 |  |  |  |  |  |
|  | 1 | **Main Line Pipes** |  | 2027-01-18 | 2027-02-04 |  |  |  |  |  |
| PRO-R25-IR-DL-140 |  | Material Delivery & Site Inspection of Softscape and Planting Works | 12d | 2027-01-18 | 2027-01-31 | PRO-IR-1DL-140 |  | -61d | 0d |  |
| PRO-R25-IR-DL-150 |  | Material Delivery & Site Inspection of Site Furnishings (Seating Bench,Stone Boulders and Gravel) | 16d | 2027-01-18 | 2027-02-04 | PRO-IR-1DL-150 |  | -58d | 0d |  |
|  | SW | **Sewage Network** |  | 2026-06-23 | 2027-04-05 |  |  |  |  |  |
|  | PO | **Issuance of Purchase Orders** |  | 2026-06-23 | 2026-10-12 |  |  |  |  |  |
|  | 1 | **Main Line Sections** |  | 2026-06-23 | 2026-06-29 |  |  |  |  |  |
| PRO-SW-PO-100 |  | Issuance of Purchase Order for Main Line Pipes of Sewage Network | 6d | 2026-06-23 A | 2026-06-29 A | ENG-MT-SW-ML-A-110 | 100% |  |  |  |
| PRO-SW-PO-110 |  | Issuance of Purchase Order for Manhole of Sewage Network | 6d | 2026-06-23 A | 2026-06-29 A | ENG-MT-SW-ML-A-100 | 100% |  |  |  |
|  | 3 | **Testing and Finishes** |  | 2026-10-06 | 2026-10-12 |  |  |  |  |  |
| PRO-SW-PO-120 |  | Issuance of Purchase Order for Manhole Covers of Sewage Network | 6d | 2026-10-06 | 2026-10-12 | ENG-MT-SW-TF-A-100, ENG-MT-RD-A-120, ENG-MT-RD-A-130 |  | -74d | 0d |  |
|  | MF | **Manufacturing of Material** |  | 2026-06-30 | 2027-02-19 |  |  |  |  |  |
|  | 1 | **Main Line Sections** |  | 2026-06-30 | 2026-08-08 |  |  |  |  |  |
| PRO-SW-MF-100 |  | Manufacturing of Main Line Pipes for Sewage Network | 20d | 2026-06-30 A | 2026-07-19 A | PRO-SW-PO-100 | 100% |  |  | PROCUREMENT MODON3 |
| PRO-SW-MF-110 |  | Manufacturing of Manholes for Sewage Network | 40d | 2026-06-30 A | 2026-08-08 A | PRO-SW-PO-110 | 100% |  |  | PROCUREMENT MODON3 |
|  | 3 | **Testing and Finishes** |  | 2026-10-13 | 2027-02-19 |  |  |  |  |  |
| PRO-SW-MF-120 |  | Manufacturing of Manhole Covers for Sewage Network | 130d | 2026-10-13 | 2027-02-19 | PRO-SW-PO-120, PRO-RD-PO-120, PRO-RD-PO-130 |  | -88d | 0d | PROCUREMENT MODON3 |
|  | 1DL | **1st Material Delivery & Site Inspection** |  | 2026-07-20 | 2027-02-28 |  |  |  |  |  |
|  | 1 | **Main Line Sections** |  | 2026-07-20 | 2026-08-15 |  |  |  |  |  |
| PRO-SW-1DL-100 |  | 1ST Material Delivery for Main Line Pipes of Sewage Network | 6d | 2026-07-20 A | 2026-07-26 A | PRO-SW-MF-100 | 100% |  |  |  |
| PRO-SW-1DL-110 |  | 1ST Material Delivery for Manholes of Sewage Network | 6d | 2026-08-09 A | 2026-08-15 A | PRO-SW-MF-110 | 100% |  |  |  |

| ID | WBS | Activity | Duration | Start | Finish | Predecessors | Complete | Total float | Free float | Calendar | Resources | 01- Network |
| --- | --- | --- | --- | --- | --- | --- | --- | --- | --- | --- | --- | --- |
|  | 3 | **Testing and Finishes** |  | 2027-02-20 | 2027-02-28 |  |  |  |  |  |  |  |
| PRO-SW-1DL-120 |  | 1ST Material Delivery for Manholes Covers of Sewage Network | 6d | 2027-02-20 | 2027-02-28 | PRO-SW-MF-120 |  | -72.5d | 0d |  |  |  |
|  | DL | **Material Delivery & Site Inspection** |  | 2026-07-27 | 2027-04-05 |  |  |  |  |  |  |  |
|  | 1 | **Main Line Sections** |  | 2026-07-27 | 2026-10-06 |  |  |  |  |  |  |  |
| PRO-R25-SW-DL-100 |  | Material Delivery & Site Inspection of Main Line Pipes for Sewage Network | 0d | 2026-07-27 A | 2026-07-27 A | PRO-SW-1DL-100, PRO-SW-MF-100 SS, PRO-SW-MF-100 FF | 100% |  |  |  | Depth Between 0m to 1.50m; Depth Between 1.50m to 2.50m; Depth > 2.50m; Depth Between 2.50m to 3.50m; Depth > 3.50m; HDPE Force Main (PE 100, SDR 11, PN 16 bar) DN 160 mm diameter, in trenches depth: 0- 1.5m; HDPE Force Main (PE 100, SDR 11, PN 16 bar) DN 160 mm diameter, in trenches depth: 1.51- 2.5m | SW |
| PRO-R25-SW-DL-110 |  | Material Delivery & Site Inspection of Manholes for Sewage Network | 0d | 2026-10-06 | 2026-10-06 | PRO-SW-1DL-110 SS, PRO-SW-MF-110 SS, PRO-SW-MF-110 FF |  | -25d | 47d |  | Depth: 0 - 1.5m; Depth: 1.51 - 2.5m; Depth: 2.51 - 3.5m; Depth > 3.50m | SW |
|  | 3 | **Testing and Finishes** |  | 2027-02-28 | 2027-04-05 |  |  |  |  |  |  |  |
| PRO-R25-SW-DL-120 |  | Material Delivery & Site Inspection of Manholes Covers for Sewage Network | 26d | 2027-02-28 | 2027-04-05 | PRO-SW-1DL-120, PRO-SW-MF-120 SS, PRO-SW-MF-120 FF |  | -72.5d | 0d |  |  |  |
|  | SD | **Storm Drainage Network** |  | 2026-08-02 | 2027-03-17 |  |  |  |  |  |  |  |
|  | MF | **Manufacturing of Material** |  | 2026-10-09 | 2027-01-20 |  |  |  |  |  |  |  |
|  | 1 | **Main Line Sections** |  | 2026-10-09 | 2026-11-22 |  |  |  |  |  |  |  |
| PRO-SD-MF-110 |  | Manufacturing of Materials for Main Line Pipes of Storm Drainage Network | 8d | 2026-10-09 | 2026-10-16 | PRO-SD-PO-110 |  | -84d | 0d | PROCUREMENT MODON3 |  |  |
| PRO-SD-MF-100 |  | Manufacturing of Materials for Manholes of Storm Drainage Network | 40d | 2026-10-13 | 2026-11-22 | PRO-SD-PO-100 |  | -105.2d | 0d | PROCUREMENT MODON3 |  |  |
|  | 2 | **Catch Basin Sections** |  | 2026-10-13 | 2026-11-01 |  |  |  |  |  |  |  |
| PRO-SD-MF-130 |  | Manufacturing of Materials for Catch Basins of Storm Drainage Network | 20d | 2026-10-13 | 2026-11-01 | PRO-SD-PO-130 |  | -75d | 0d | PROCUREMENT MODON3 |  |  |
| PRO-SD-MF-150 |  | Manufacturing of Materials for Catch Basin Pipes of Storm Drainage Network | 20d | 2026-10-13 | 2026-11-01 | PRO-SD-PO-150 |  | -75d | 0d | PROCUREMENT MODON3 |  |  |
|  | 3 | **Testing and Finishes** |  | 2026-10-13 | 2027-01-20 |  |  |  |  |  |  |  |
| PRO-SD-MF-120 |  | Manufacturing of Materials for Manhole Covers of Storm Drainage Network | 100d | 2026-10-13 | 2027-01-20 | PRO-SD-PO-120 |  | -59d | 0d | PROCUREMENT MODON3 |  |  |
| PRO-SD-MF-140 |  | Manufacturing of Materials for Catch Basin Covers of Storm Drainage Network | 100d | 2026-10-13 | 2027-01-20 | PRO-SD-PO-140 |  | -64d | 0d | PROCUREMENT MODON3 |  |  |
|  | PO | **Issuance of Purchase Orders** |  | 2026-10-06 | 2026-10-13 |  |  |  |  |  |  |  |
|  | 1 | **Main Line Sections** |  | 2026-10-06 | 2026-10-13 |  |  |  |  |  |  |  |
| PRO-SD-PO-100 |  | Issuance of Purchase Order for Manholes of Storm Drainage Network | 6.2d | 2026-10-06 | 2026-10-13 | ENG-MT-SD-ML-A-100 |  | -88.95d | 0d |  |  |  |
| PRO-SD-PO-110 |  | Issuance of Purchase Order for Main Line Pipes of Storm Drainage Network | 3d | 2026-10-06 | 2026-10-08 | ENG-MT-SD-ML-A-110, MS-CS-PS SS, ENG-SH-SD-CB-S-100_R |  | -83.75d | 0d |  |  |  |
|  | 2 | **Catch Basin Sections** |  | 2026-10-06 | 2026-10-12 |  |  |  |  |  |  |  |
| PRO-SD-PO-130 |  | Issuance of Purchase Order for Catch Basins of Storm Drainage Network | 6d | 2026-10-06 | 2026-10-12 | ENG-MT-SD-CB-A-100 |  | -62.75d | 0d |  |  |  |
| PRO-SD-PO-150 |  | Issuance of Purchase Order for Catch Basin Pipes of Storm Drainage Network | 6d | 2026-10-06 | 2026-10-12 | ENG-MT-SD-CB-A-110 |  | -62.75d | 0d |  |  |  |

| ID | WBS | Activity | Duration | Start | Finish | Predecessors | Complete | Remaining | Planned start | Planned finish | Total float | Free float | Resources | 01- Network |
| --- | --- | --- | --- | --- | --- | --- | --- | --- | --- | --- | --- | --- | --- | --- |
|  | 3 | **Testing and Finishes** |  | 2026-10-06 | 2026-10-12 |  |  |  |  |  |  |  |  |  |
| PRO-SD-PO-120 |  | Issuance of Purchase Order for Manhole Covers of Storm Drainage Network | 6d | 2026-10-06 | 2026-10-12 | ENG-MT-SD-TF-A-100 |  |  |  |  | -49.75d | 0d |  |  |
| PRO-SD-PO-140 |  | Issuance of Purchase Order for Catch Basin Covers of Storm Drainage Network | 6d | 2026-10-06 | 2026-10-12 | ENG-MT-SD-TF-A-110 |  |  |  |  | -53.75d | 0d |  |  |
|  | 1DL | **1st Material Delivery & Site Inspection** |  | 2026-10-17 | 2027-01-27 |  |  |  |  |  |  |  |  |  |
|  | 1 | **Main Line Sections** |  | 2026-10-17 | 2026-10-22 |  |  |  |  |  |  |  |  |  |
| PRO-SD-1DL-110 |  | 1ST Material Delivery for Main Line Pipes of Storm Drainage Network | 6d | 2026-10-17 | 2026-10-22 | PRO-SD-MF-110 |  |  |  |  | -71d | 0d |  |  |
|  | 2 | **Catch Basin Sections** |  | 2026-11-02 | 2026-11-08 |  |  |  |  |  |  |  |  |  |
| PRO-SD-1DL-120 |  | 1ST Material Delivery for Catch Basin Pipes of Storm Drainage Network | 6d | 2026-11-02 | 2026-11-08 | PRO-SD-MF-150 |  |  |  |  | -63d | 0d |  |  |
| PRO-SD-1DL-130 |  | 1ST Material Delivery for Catch Basins of Storm Drainage Network | 6d | 2026-11-02 | 2026-11-08 | PRO-SD-MF-130 |  |  |  |  | -63d | 0d |  |  |
|  | 3 | **Testing and Finishes** |  | 2027-01-21 | 2027-01-27 |  |  |  |  |  |  |  |  |  |
| PRO-SD-1DL-140 |  | 1ST Material Delivery for Manholes Covers of Storm Drainage Network | 6d | 2027-01-21 | 2027-01-27 | PRO-SD-MF-120 |  |  |  |  | -51d | 7d |  |  |
| PRO-SD-1DL-150 |  | 1ST Material Delivery for Catch Basin Covers of Storm Drainage Network | 6d | 2027-01-21 | 2027-01-27 | PRO-SD-MF-140 |  |  |  |  | -55d | 0d |  |  |
|  | DL | **Material Delivery & Site Inspection** |  | 2026-08-02 | 2027-03-17 |  |  |  |  |  |  |  |  |  |
|  | 1 | **Main Line Sections** |  | 2026-08-02 | 2026-11-22 |  |  |  |  |  |  |  |  |  |
| PRO-R25-SD-DL-100 |  | Material Delivery & Site Inspection of Manholes of Storm Drainage Network | 0d | 2026-08-02 A | 2026-11-22 | PRO-SD-MF-100 FF | 40% | 0d | 2026-08-09 | 2026-08-09 | -89.2d | 0d | MH depth 1.5 - 2.5m; MH depth 2.5 - 3.5m; MH depth > 3.50m; MH depth 2.5 -3.5m | SD |
| PRO-R25-SD-DL-120 |  | Material Delivery & Site Inspection of Main Line Pipes of Storm Drainage Network | 0d | 2026-08-02 A | 2026-10-24 | PRO-SD-1DL-110 FF, PRO-SD-MF-110 FF | 82% | 0d | 2026-07-16 | 2026-07-16 | -71d | 0d | Depth Between 1.50m to 2.50m; Depth Between 2.50m to 3.50m; Depth > 3.50m; Depth Between 0m to 1.50m; Depth Between 3.50m to 4.50m; Depth > 4.50m | SD |
|  | 2 | **Catch Basin Sections** |  | 2026-08-02 | 2026-11-09 |  |  |  |  |  |  |  |  |  |
| PRO-R25-SD-DL-110 |  | Material Delivery & Site Inspection of Catch Basin Pipes for Storm Drainage Network | 0d | 2026-08-02 A | 2026-11-09 | PRO-SD-MF-150 FF, PRO-SD-1DL-120 FF | 40% | 0d | 2026-07-27 | 2026-07-27 | -53d | 36.2d | Depth Between 0m to 1.50m; Depth Between 1.50m to 2.50m; Depth > 2.50m | SD |
| PRO-R25-SD-DL-130 |  | Material Delivery & Site Inspection of Catch Basins for Storm Drainage Network | 0d | 2026-08-02 A | 2026-11-09 | PRO-SD-MF-130 FF, PRO-SD-1DL-130 FF | 40% | 0d | 2026-07-27 | 2026-07-27 | -53d | 36.2d | Single Catch Basin 1000mm x 1000mm; Double Catch Basin 1200mm x 2300mm | SD |
|  | 3 | **Testing and Finishes** |  | 2027-01-28 | 2027-03-17 |  |  |  |  |  |  |  |  |  |
| PRO-R25-SD-DL-150 |  | Material Delivery & Site Inspection of Catch Basin Covers for Storm Drainage Network | 20d | 2027-01-28 | 2027-02-24 | PRO-SD-1DL-150, PRO-SD-MF-140 |  |  |  |  | -55d | 34.2d |  |  |
| PRO-R25-SD-DL-140 |  | Material Delivery & Site Inspection of Manholes Covers for Storm Drainage Network | 26d | 2027-02-06 | 2027-03-17 | PRO-SD-1DL-140, PRO-SD-MF-120, PRO-R25-IR-DL-150 |  |  |  |  | -58d | 31.2d |  |  |
|  | PW | **Potable Water Network** |  | 2026-04-01 | 2027-03-24 |  |  |  |  |  |  |  |  |  |
|  | PO | **Issuance of Purchase Orders** |  | 2026-04-02 | 2026-10-17 |  |  |  |  |  |  |  |  |  |
|  | 1 | **Main Line Sections** |  | 2026-04-02 | 2026-10-14 |  |  |  |  |  |  |  |  |  |
| PRO-PW-PO-100 |  | Issuance of Purchase Order for Main Line Pipes of Potable Water Network(Completed) | 60.5d | 2026-04-02 A | 2026-06-15 A | ENG-MT-PW-ML-A-100 | 100% |  | 2026-04-02 | 2026-06-16 |  |  |  |  |
| PRO-PW-PO-110 |  | Issuance of Purchase Order for Valves of Potable Water Network | 6d | 2026-10-06 | 2026-10-12 | ENG-MT-PW-ML-A-110 |  |  |  |  | -56.25d | 0d |  |  |
| PRO-PW-PO-100_R |  | Issuance of Purchase Order for Main Line Pipes of Potable Water Network(Remaining) | 5d | 2026-10-10 | 2026-10-14 | ENG-MT-PW-ML-A-100 FF, PRO-PW-PO-100, PRO-SD-PO-110 |  |  |  |  | -83.75d | 0d |  |  |

| ID | WBS | Activity | Duration | Start | Finish | Predecessors | Complete | Remaining | Planned start | Planned finish | Total float | Free float | Calendar | Resources | 01- Network |
| --- | --- | --- | --- | --- | --- | --- | --- | --- | --- | --- | --- | --- | --- | --- | --- |
|  | 3 | **Fire Hydrant** |  | 2026-10-06 | 2026-10-17 |  |  |  |  |  |  |  |  |  |  |
| PRO-PW-PO-120 |  | Issuance of Purchase Order for Fire Hydrants of Potable Water Network | 10d | 2026-10-06 | 2026-10-17 | ENG-MT-PW-FH-A-100 |  |  |  |  | -41.25d | 0d |  |  |  |
|  | 4 | **Testing and Finishes** |  | 2026-10-06 | 2026-10-17 |  |  |  |  |  |  |  |  |  |  |
| PRO-PW-PO-130 |  | Issuance of Purchase Order for Surface Box of Potable Water Network | 10d | 2026-10-06 | 2026-10-17 | ENG-MT-PW-TF-A-100 |  |  |  |  | -45.75d | 0d |  |  |  |
|  | MF | **Manufacturing of Material** |  | 2026-04-04 | 2027-02-04 |  |  |  |  |  |  |  |  |  |  |
|  | 1 | **Main Line Sections** |  | 2026-04-04 | 2027-01-19 |  |  |  |  |  |  |  |  |  |  |
| PRO-PW-MF-100 |  | Manufacturing of Main Line Pipes for Potable Water Network(Completed) | 30d | 2026-04-04 A | 2026-06-15 A | PRO-PW-PO-100 SS | 100% |  | 2026-04-04 | 2026-05-03 |  |  | PROCUREMENT MODON3 |  |  |
| PRO-PW-MF-110 |  | Manufacturing of Valves for Potable Water Network | 90d | 2026-10-13 | 2027-01-10 | PRO-PW-PO-110, PRO-R25-PW-DL-120 FF |  |  |  |  | -67.5d | 0d | PROCUREMENT MODON3 |  |  |
| PRO-PW-MF-100_R |  | Manufacturing of Main Line Pipes for Potable Water Network(Remaining) | 96.5d | 2026-10-15 | 2027-01-19 | PRO-PW-PO-100_R, PRO-PW-MF-100 |  |  |  |  | -99d | 0d | PROCUREMENT MODON3 |  |  |
|  | 3 | **Fire Hydrant** |  | 2026-10-18 | 2026-12-16 |  |  |  |  |  |  |  |  |  |  |
| PRO-PW-MF-120 |  | Manufacturing of Fire Hydrants for Potable Water Network | 60d | 2026-10-18 | 2026-12-16 | PRO-PW-PO-120 |  |  |  |  | -49.5d | 0d | PROCUREMENT MODON3 |  |  |
|  | 4 | **Testing and Finishes** |  | 2026-10-18 | 2027-02-04 |  |  |  |  |  |  |  |  |  |  |
| PRO-PW-MF-130 |  | Manufacturing for Surface Box of Potable Water Network | 110d | 2026-10-18 | 2027-02-04 | PRO-PW-PO-130 |  |  |  |  | -55d | 1d | PROCUREMENT MODON3 |  |  |
|  | 1DL | **1st Material Delivery & Site Inspection** |  | 2026-04-05 | 2027-02-14 |  |  |  |  |  |  |  |  |  |  |
|  | 1 | **Main Line Sections** |  | 2026-04-05 | 2027-01-17 |  |  |  |  |  |  |  |  |  |  |
| PRO-PW-1DL-100 |  | 1ST Material Delivery for Main Line Pipes of Potable Water Network(Completed) | 58.5d | 2026-04-05 A | 2026-06-15 A | PRO-PW-MF-100 SS | 100% |  | 2026-04-05 | 2026-06-16 |  |  |  |  |  |
| PRO-PW-1DL-100_R |  | 1ST Material Delivery for Main Line Pipes of Potable Water Network(Remaining) | 70.5d | 2026-10-15 | 2027-01-05 | PRO-PW-MF-100_R SS, PRO-PW-1DL-100 |  |  |  |  | -73d | 0d |  |  |  |
| PRO-PW-1DL-110 |  | 1ST Material Delivery for Valves of Potable Water Network | 6d | 2027-01-11 | 2027-01-17 | PRO-PW-MF-110 |  |  |  |  | -57.5d | 0d |  |  |  |
|  | 3 | **Fire Hydrant** |  | 2026-12-17 | 2026-12-23 |  |  |  |  |  |  |  |  |  |  |
| PRO-PW-1DL-120 |  | 1ST Material Delivery for Fire Hydrants of Potable Water Network | 6d | 2026-12-17 | 2026-12-23 | PRO-PW-MF-120 |  |  |  |  | -42.5d | 0d |  |  |  |
|  | 4 | **Testing and Finishes** |  | 2027-02-06 | 2027-02-14 |  |  |  |  |  |  |  |  |  |  |
| PRO-PW-1DL-130 |  | 1ST Material Delivery for Finishes of Potable Water Network | 6d | 2027-02-06 | 2027-02-14 | PRO-PW-MF-130 |  |  |  |  | -48d | 0d |  |  |  |
|  | DL | **Material Delivery & Site Inspection** |  | 2026-04-01 | 2027-03-24 |  |  |  |  |  |  |  |  |  |  |
|  | 1 | **Main Line Sections** |  | 2026-04-01 | 2027-01-18 |  |  |  |  |  |  |  |  |  |  |
| PRO-R25-PW-DL-100 |  | Material Delivery & Site Inspection of Main Line Pipes for Potable Water Network(Completed) | 0d | 2026-04-01 A | 2026-06-15 A | PRO-PW-1DL-100 SS | 100% |  | 2026-04-01 | 2026-04-01 |  |  |  | Depth Between 0m to 1.50m; Depth Between 1.50m to 2.50m; Depth > 2.50m | PW |
| PRO-R25-PW-DL-100_R |  | Material Delivery & Site Inspection of Main Line Pipes for Potable Water Network(Remaining) | 0d | 2026-08-02 A | 2027-01-05 | PRO-R25-PW-DL-100, PRO-PW-1DL-100_R FF | 90% | 0d | 2026-09-29 | 2026-09-29 | -73d | 12d |  | Depth Between 0m to 1.50m; Depth Between 1.50m to 2.50m; Depth > 2.50m | PW |
| PRO-R25-PW-DL-110 |  | Material Delivery & Site Inspection of Valves for Potable Water Network | 0d | 2027-01-18 | 2027-01-18 | PRO-PW-1DL-110 |  |  |  |  | -51.5d | 31.5d |  | Gate valves Dia 50 mm; Gate valves Dia 100 mm; Gate valves Dia 150 mm; Gate valves Dia 250 mm; Air valves with Dia 50 mm; Washout valve Dia 100 mm; Wash out chamber (2500x 2500mm); Air valve chamber (1000x 1000 mm); Flow meter chamber (1500x 2500 mm); Flow meter dia 100 mm | PW |

| ID | WBS | Activity | Duration | Start | Finish | Predecessors | Complete | Planned start | Planned finish | Total float | Free float | Calendar | Resources | 01- Network | Displane |
| --- | --- | --- | --- | --- | --- | --- | --- | --- | --- | --- | --- | --- | --- | --- | --- |
|  | 3 | **Fire Hydrant** |  | 2026-12-24 | 2026-12-24 |  |  |  |  |  |  |  |  |  |  |
| PRO-R25-PW-DL-120 |  | Material Delivery & Site Inspection of Fire Hydrants for Potable Water Network | 0d | 2026-12-24 | 2026-12-24 | PRO-PW-1DL-120 |  |  |  | -42.5d | 15d |  | 3-outlet fire hydrant (2 x 2.5 inch and 1 x 4.5 inch) in the form of a separate dry vacuum cylinder, complete according to drawings. | PW |  |
|  | 4 | **Testing and Finishes** |  | 2027-02-14 | 2027-03-24 |  |  |  |  |  |  |  |  |  |  |
| PRO-R25-PW-DL-130 |  | Material Delivery & Site Inspection for Finishes of Potable Water Network | 26d | 2027-02-14 | 2027-03-24 | PRO-PW-1DL-130 |  |  |  | -48d | 35d |  |  |  |  |
|  | IR | **Irrigation Network** |  | 2026-01-28 | 2027-01-25 |  |  |  |  |  |  |  |  |  |  |
|  | PO | **Issuance of Purchase Orders** |  | 2026-01-28 | 2026-10-19 |  |  |  |  |  |  |  |  |  |  |
|  | 1 | **Main Line Pipes** |  | 2026-01-28 | 2026-10-19 |  |  |  |  |  |  |  |  |  |  |
| PRO-IR-PO-100 |  | Issuance of Purchase Order for Main Line Pipes of Irrigation Network(Completed) | 105.25d | 2026-01-28 A | 2026-06-15 A | ENG-MT-IR-ML-A-100 | 100% | 2026-01-28 | 2026-06-16 |  |  |  |  |  |  |
| PRO-IR-PO-110 |  | Issuance of Purchase Order for Valves of Irrigation Network | 6d | 2026-10-13 | 2026-10-19 | ENG-MT-IR-ML-A-110, ENG-SH-HS-S-100, PRO-PW-PO-110 |  |  |  | -54.25d | 0d |  |  |  |  |
| PRO-IR-PO-100_R |  | Issuance of Purchase Order for Main Line Pipes of Irrigation Network(Remaining) | 3.3d | 2026-10-15 | 2026-10-19 | ENG-MT-IR-ML-A-100, PRO-IR-PO-100, PRO-PW-PO-100_R |  |  |  | -68.05d | 0d |  |  |  |  |
|  | MF | **Manufacturing of Material** |  | 2026-10-19 | 2027-01-17 |  |  |  |  |  |  |  |  |  |  |
|  | 1 | **Main Line Pipes** |  | 2026-10-19 | 2027-01-17 |  |  |  |  |  |  |  |  |  |  |
| PRO-IR-MF-100 |  | Manufacturing of Main Line Pipes for Irrigation Network | 86d | 2026-10-19 | 2027-01-13 | PRO-IR-PO-100_R |  |  |  | -81.3d | 0d | PROCUREMENT MODON3 |  |  |  |
| PRO-IR-MF-110 |  | Manufacturing of Valves for Irrigation Network | 90d | 2026-10-20 | 2027-01-17 | PRO-IR-PO-110 |  |  |  | -64.5d | 0d | PROCUREMENT MODON3 |  |  |  |
|  | 1DL | **1st Material Delivery & Site Inspection** |  | 2027-01-13 | 2027-01-24 |  |  |  |  |  |  |  |  |  |  |
|  | 1 | **Main Line Pipes** |  | 2027-01-13 | 2027-01-24 |  |  |  |  |  |  |  |  |  |  |
| PRO-IR-1DL-100 |  | 1ST Material Delivery for Main Line Pipes of Irrigation Network | 5d | 2027-01-13 | 2027-01-19 | PRO-IR-MF-100 |  |  |  | -70.3d | 0d |  |  |  |  |
| PRO-IR-1DL-110 |  | 1ST Material Delivery for Valves of Irrigation Network | 6d | 2027-01-18 | 2027-01-24 | PRO-IR-MF-110 |  |  |  | -55.5d | 0d |  |  |  |  |
|  | DL | **Material Delivery & Site Inspection** |  | 2027-01-19 | 2027-01-25 |  |  |  |  |  |  |  |  |  |  |
|  | 1 | **Main Line Pipes** |  | 2027-01-19 | 2027-01-25 |  |  |  |  |  |  |  |  |  |  |
| PRO-R25-IR-DL-100 |  | Material Delivery & Site Inspection of Main Line Pipes for Irrigation Network | 0d | 2027-01-19 | 2027-01-19 | PRO-IR-1DL-100, PRO-IR-MF-100 SS, PRO-IR-MF-100 FF |  |  |  | -70.3d | 8.2d |  | pipe line O.D 32 mm PN 10, in depth 0 to 1.5 m; pipe line O.D 40 mm PN 10, in depth 0 to 1.5 m; pipe line O.D 50 mm PN 10, in depth 0 to 1.5 m | IR | irr |
| PRO-R25-IR-DL-110 |  | Material Delivery & Site Inspection of Valves for Irrigation Network | 0d | 2027-01-25 | 2027-01-25 | PRO-IR-1DL-110, PRO-IR-MF-110 |  |  |  | -55.5d | 23d |  | Gate valve 50 mm PN16; Direct Burried Gate valve 40 mm PN16; Pressure–compensating bubblers 110 Lit/Hr; Flushing Bronze gate valve dia 1.5" inside PVC box; Air release valve 1.5" inside PVC box; Extra flexible pressure compensating on surface inline dripline`s, O.D. is 16.1 mm; Electrical Solenoid Valve ( 1.5") inside PVC box; Electrical Solenoid Valve ( 2") inside PVC box; Quick coupling valve 1" inside a round valve box 10" size with a manual gate valve, hose swivel and key with all accessories; Advanced Irrigation controller subject to client approval, can connect with Centarl Control system; Decoder cables 12 AWG between valves and controllers, The cables shall be pulled through 32Ø UPVC conduit; Preparing the irrigation program for the entire system and providing technical services for monitoring and controlling the central irrigation systems | IR | irr |
|  | TSE | **Treated Sewage Effluent (Tse)** |  | 2026-04-01 | 2027-01-18 |  |  |  |  |  |  |  |  |  |  |
|  | PO | **Issuance of Purchase Orders** |  | 2026-10-06 | 2026-10-12 |  |  |  |  |  |  |  |  |  |  |
|  | 1 | **Main Line Pipes** |  | 2026-10-06 | 2026-10-12 |  |  |  |  |  |  |  |  |  |  |
| PRO-TSE-PO-120 |  | Issuance of Purchase Order for Main Line Pipes of Treated Sewage Effluent (Tse) | 6d | 2026-10-06 | 2026-10-12 | ENG-MT-IR-ML-A-120, ENG-SH-HS-S-100 |  |  |  | -66.25d | 0d |  |  |  |  |
| PRO-TSE-PO-130 |  | Issuance of Purchase Order for Valves of Treated Sewage Effluent (Tse) | 6d | 2026-10-06 | 2026-10-12 | ENG-MT-IR-ML-A-130, ENG-SH-HS-S-100 |  |  |  | -47.25d | 0d |  |  |  |  |

| ID | WBS | Activity | Duration | Start | Finish | Predecessors | Complete | Remaining | Planned start | Planned finish | Total float | Free float | Calendar | Resources | 01- Network |
| --- | --- | --- | --- | --- | --- | --- | --- | --- | --- | --- | --- | --- | --- | --- | --- |
|  | MF | **Manufacturing of Material** |  | 2026-10-13 | 2027-01-10 |  |  |  |  |  |  |  |  |  |  |
|  | 1 | **Main Line Pipes** |  | 2026-10-13 | 2027-01-10 |  |  |  |  |  |  |  |  |  |  |
| PRO-TSE-MF-120 |  | Manufacturing of Main Line Pipes for Treated Sewage Effluent (Tse) | 90d | 2026-10-13 | 2027-01-10 | PRO-TSE-PO-120 |  |  |  |  | -78.5d | 0d | PROCUREMENT MODON3 |  |  |
| PRO-TSE-MF-130 |  | Manufacturing of Valves for Treated Sewage Effluent (Tse) | 90d | 2026-10-13 | 2027-01-10 | PRO-TSE-PO-130 |  |  |  |  | -56.5d | 0d | PROCUREMENT MODON3 |  |  |
|  | 1DL | **1st Material Delivery & Site Inspection** |  | 2027-01-11 | 2027-01-17 |  |  |  |  |  |  |  |  |  |  |
|  | 1 | **Main Line Pipes** |  | 2027-01-11 | 2027-01-17 |  |  |  |  |  |  |  |  |  |  |
| PRO-TSE-1DL-120 |  | 1ST Material Delivery for Main Line Pipes of Treated Sewage Effluent (Tse) | 6d | 2027-01-11 | 2027-01-17 | PRO-TSE-MF-120 |  |  |  |  | -67.5d | 0d |  |  |  |
| PRO-TSE-1DL-130 |  | 1ST Material Delivery for Valves of Treated Sewage Effluent (Tse) | 6d | 2027-01-11 | 2027-01-17 | PRO-TSE-MF-130 |  |  |  |  | -48.5d | 0d |  |  |  |
|  | DL | **Material Delivery & Site Inspection** |  | 2026-04-01 | 2027-01-18 |  |  |  |  |  |  |  |  |  |  |
|  | 1 | **Main Line Pipes** |  | 2026-04-01 | 2027-01-18 |  |  |  |  |  |  |  |  |  |  |
| PRO-R25-TSE-DL-120 |  | Material Delivery & Site Inspection of Main Line Pipes for Treated Sewage Effluent (Tse)(Completed) | 0d | 2026-04-01 A | 2026-06-15 A | PRO-IR-PO-100 | 100% |  | 2026-04-01 | 2026-04-01 |  |  |  | Depth Between 0m to 1.50m; Depth Between 1.50m to 2.50m; Depth > 2.50m | TSE |
| PRO-R25-TSE-DL-120_R |  | Material Delivery & Site Inspection of Main Line Pipes for Treated Sewage Effluent (Tse)(Remaining) | 0d | 2026-08-02 A | 2027-01-18 | PRO-TSE-MF-120 FF, PRO-TSE-1DL-120 FF, PRO-R25-TSE-DL-120 | 50% | 0d | 2026-10-10 | 2026-10-10 | -67.5d | 9.5d |  | Depth Between 0m to 1.50m; Depth Between 1.50m to 2.50m; Depth > 2.50m | TSE |
| PRO-R25-TSE-DL-130 |  | Material Delivery & Site Inspection of Valves for Treated Sewage Effluent (Tse) | 0d | 2027-01-18 | 2027-01-18 | PRO-TSE-MF-130, PRO-TSE-1DL-130 |  |  |  |  | -48.5d | 29d |  | Gate valves dia 50 mm; Gate valves dia 100 mm; Gate valves dia 150 mm; Gate valves dia 200 mm; Air valves with dia 50 mm; Washout valve dia 100 mm; Wash out chamber (2500x 2500mm); Air valve chamber (1000x 1000 mm); Flow meter chamber (1500x 3000 mm); Flow meter dia 150 mm | TSE |
|  | MV | **Medium Voltage Network** |  | 2026-10-06 | 2027-03-15 |  |  |  |  |  |  |  |  |  |  |
|  | PO | **Issuance of Purchase Orders** |  | 2026-10-06 | 2026-10-19 |  |  |  |  |  |  |  |  |  |  |
|  | 1 | **Cabling Works** |  | 2026-10-06 | 2026-10-19 |  |  |  |  |  |  |  |  |  |  |
| PRO-MV-PO-100 |  | Issuance of Purchase Order for Medium Voltage Cables of Medium Voltage Network | 12d | 2026-10-06 | 2026-10-19 | ENG-MT-MV-ML-A-100 |  |  |  |  | -52.25d | 0d |  |  |  |
|  | 3 | **Termination and Testing Works** |  | 2026-10-06 | 2026-10-19 |  |  |  |  |  |  |  |  |  |  |
| PRO-MV-PO-120 |  | Issuance of Purchase Order for Termination and Joints Kits of Medium Voltage Network | 12d | 2026-10-06 | 2026-10-19 | ENG-MT-MV-TF-A-100 |  |  |  |  | -59.75d | 0d |  |  |  |
|  | MF | **Manufacturing of Material** |  | 2026-10-20 | 2027-01-17 |  |  |  |  |  |  |  |  |  |  |
|  | 1 | **Cabling Works** |  | 2026-10-20 | 2026-12-18 |  |  |  |  |  |  |  |  |  |  |
| PRO-MV-MF-100 |  | Manufacturing of Medium Voltage Cables for Medium Voltage Network | 60d | 2026-10-20 | 2026-12-18 | PRO-MV-PO-100 |  |  |  |  | -62.5d | 0d | PROCUREMENT MODON3 |  |  |
|  | 3 | **Termination and Testing Works** |  | 2026-10-20 | 2027-01-17 |  |  |  |  |  |  |  |  |  |  |
| PRO-MV-MF-110 |  | Manufacturing of Termination and Joints Kits for Medium Voltage Network | 90d | 2026-10-20 | 2027-01-17 | PRO-MV-PO-120 |  |  |  |  | -71d | 0d | PROCUREMENT MODON3 |  |  |

| ID | WBS | Activity | Duration | Start | Finish | Predecessors | Total float | Free float | Resources | 01- Network |
| --- | --- | --- | --- | --- | --- | --- | --- | --- | --- | --- |
|  | 1DL | **1st Material Delivery & Site Inspection** |  | 2026-12-19 | 2027-02-02 |  |  |  |  |  |
|  | 1 | **Cabling Works** |  | 2026-12-19 | 2026-12-31 |  |  |  |  |  |
| PRO-MV-1DL-100 |  | 1ST Material Delivery for Medium Voltage Cables of Medium Voltage Network | 12d | 2026-12-19 | 2026-12-31 | PRO-MV-MF-100 | -53.5d | 0d |  |  |
|  | 3 | **Termination and Testing Works** |  | 2027-01-18 | 2027-02-02 |  |  |  |  |  |
| PRO-MV-1DL-120 |  | 1ST Material Delivery for Termination and Joints Kits of Medium Voltage Network | 14d | 2027-01-18 | 2027-02-02 | PRO-MV-MF-110 | -61d | 0d |  |  |
|  | DL | **Material Delivery & Site Inspection** |  | 2027-01-02 | 2027-03-15 |  |  |  |  |  |
|  | 1 | **Cabling Works** |  | 2027-01-02 | 2027-01-02 |  |  |  |  |  |
| PRO-MV-DL-100 |  | Material Delivery & Site Inspection of Medium Voltage Cables for Medium Voltage Network | 0d | 2027-01-02 | 2027-01-02 | PRO-MV-1DL-100, PRO-MV-MF-100 SS, PRO-MV-MF-100 FF | -53.5d | 31.5d | Excavation for Trench size 40cm wide and 80cm deep (for 1 cable); Excavation for Trench Size 60cm wide and 80cm deep (for 2 cables); Excavation for Trench Size 90cm wide and 80cm deep (for 3 cables); Excavation for Trench Size 180cm wide and 80cm deep (for 6 cables); Excavation for Trench Size 210 cm wide and 80cm deep (for 7 cables); Excavation for Trench Size 240cm wide and 80cm deep (for 8 cables); Duct bank for (33) cables; Duct bank for (21) cables; Duct bank for (15) cables; HV Cable Road Crossing | MV |
|  | 3 | **Termination and Testing Works** |  | 2027-02-03 | 2027-03-15 |  |  |  |  |  |
| PRO-MV-DL-110 |  | Material Delivery & Site Inspection of Termination and Joints Kits for Medium Voltage Network | 26d | 2027-02-03 | 2027-03-15 | PRO-MV-1DL-120, PRO-MV-MF-110 SS, PRO-MV-MF-110 FF | -61d | 20.5d |  |  |
|  | SL | **Low Voltage and Street Lighting Network** |  | 2026-10-06 | 2027-05-03 |  |  |  |  |  |
|  | PO | **Issuance of Purchase Orders** |  | 2026-10-06 | 2026-10-17 |  |  |  |  |  |
|  | 1 | **Cabling Works** |  | 2026-10-06 | 2026-10-12 |  |  |  |  |  |
| PRO-SL-PO-100 |  | Issuance of Purchase Order for Lighting Cables of Street Lighting Network | 6d | 2026-10-06 | 2026-10-12 | ENG-MT-SL-ML-A-100, ENG-MT-SL-ML-S-100 | -52.25d | 0d |  |  |
|  | 2 | **Lighting Poles Works** |  | 2026-10-06 | 2026-10-12 |  |  |  |  |  |
| PRO-SL-PO-110 |  | Issuance of Purchase Order for Lighting Poles Foundations of Street Lighting Network | 6d | 2026-10-06 | 2026-10-12 | ENG-MT-SL-S-100, ENG-MT-SL-A-100 | -81.25d | 0d |  |  |
| PRO-SL-PO-120 |  | Issuance of Purchase Order for Lighting Poles of Street Lighting Network | 6d | 2026-10-06 | 2026-10-12 | ENG-MT-SL-S-110, ENG-MT-SL-A-110 | -47.25d | 0d |  |  |
| PRO-SL-PO-140 |  | Issuance of Purchase Order for Lighting Fixtures of Street Lighting Network | 6d | 2026-10-06 | 2026-10-12 | ENG-MT-SL-S-120, ENG-MT-SL-A-120, PRO-RD-PO-140 | -36.75d | 0d |  |  |
|  | 3 | **Distribution Panel Board** |  | 2026-10-06 | 2026-10-17 |  |  |  |  |  |
| PRO-SL-PO-160 |  | Issuance of Purchase Order for Distrubution Panel Boards of Street Lighting Network | 10d | 2026-10-06 | 2026-10-17 | ENG-MT-SL-DB-S-100, ENG-MT-SL-DB-A-100 | -36.75d | 0d |  |  |
|  | 4 | **Earthing System Works** |  | 2026-10-06 | 2026-10-14 |  |  |  |  |  |
| PRO-SL-PO-150 |  | Issuance of Purchase Order for Lighting Earthing of Street Lighting Network | 8d | 2026-10-06 | 2026-10-14 | ENG-MT-SL-ES-S-100, ENG-MT-SL-ES-A-100 | -48.75d | 0d |  |  |
|  | 5 | **Termination and Testing Works** |  | 2026-10-06 | 2026-10-14 |  |  |  |  |  |
| PRO-SL-PO-130 |  | Issuance of Purchase Order for Fuse Boxes of Street Lighting Network | 8d | 2026-10-06 | 2026-10-14 | ENG-MT-SL-TF-S-100, ENG-MT-SL-TF-A-100 | -76d | 0d |  |  |
| PRO-SL-PO-170 |  | Issuance of Purchase Order for Cable Lugs of Street Lighting Network | 8d | 2026-10-06 | 2026-10-14 | ENG-MT-SL-TF-S-110, ENG-MT-SL-TF-A-110 | -45.75d | 0d |  |  |

| ID | WBS | Activity | Duration | Start | Finish | Predecessors | Total float | Free float | Calendar |
| --- | --- | --- | --- | --- | --- | --- | --- | --- | --- |
|  | MF | **Manufacturing of Material** |  | 2026-10-13 | 2027-03-16 |  |  |  |  |
|  | 1 | **Cabling Works** |  | 2026-10-13 | 2027-01-10 |  |  |  |  |
| PRO-SL-MF-100 |  | Manufacturing of Lighting Cables for Street Lighting Network | 90d | 2026-10-13 | 2027-01-10 | PRO-SL-PO-100 | -62.5d | 0d | PROCUREMENT MODON3 |
|  | 2 | **Lighting Poles Works** |  | 2026-10-13 | 2027-02-17 |  |  |  |  |
| PRO-SL-MF-110 |  | Manufacturing of Lighting Poles Foundations for Street Lighting Network | 90d | 2026-10-13 | 2027-01-10 | PRO-SL-PO-110 | -96.38d | 0d | PROCUREMENT MODON3 |
| PRO-SL-MF-120 |  | Manufacturing of Lighting Poles for Street Lighting Network | 90d | 2026-10-13 | 2027-01-10 | PRO-SL-PO-120 | -56.5d | 0d | PROCUREMENT MODON3 |
| PRO-SL-MF-140 |  | Manufacturing of Lighting Fixtures for Street Lighting Network | 128d | 2026-10-13 | 2027-02-17 | PRO-SL-PO-140 | -44d | 0d | PROCUREMENT MODON3 |
|  | 3 | **Distribution Panel Board** |  | 2026-10-18 | 2027-02-04 |  |  |  |  |
| PRO-SL-MF-160 |  | Manufacturing of Distrubution Panel Boards for Street Lighting Network | 110d | 2026-10-18 | 2027-02-04 | PRO-SL-PO-160 | -45d | 1d | PROCUREMENT MODON3 |
|  | 4 | **Earthing System Works** |  | 2026-10-15 | 2027-03-03 |  |  |  |  |
| PRO-SL-MF-150 |  | Manufacturing of Lighting Earthing for Street Lighting Network | 140d | 2026-10-15 | 2027-03-03 | PRO-SL-PO-150 | -58d | 0d | PROCUREMENT MODON3 |
|  | 5 | **Termination and Testing Works** |  | 2026-10-15 | 2027-03-16 |  |  |  |  |
| PRO-SL-MF-130 |  | Manufacturing of Fuse Boxes for Street Lighting Network | 149d | 2026-10-15 | 2027-03-16 | PRO-SL-PO-130 | -90d | 0d | PROCUREMENT MODON3 |
| PRO-SL-MF-170 |  | Manufacturing of Cable Lugs for Street Lighting Network | 110d | 2026-10-15 | 2027-02-01 | PRO-SL-PO-170 | -54d | 0d | PROCUREMENT MODON3 |
|  | 1DL | **1st Material Delivery & Site Inspection** |  | 2027-01-11 | 2027-04-03 |  |  |  |  |
|  | 1 | **Cabling Works** |  | 2027-01-11 | 2027-01-17 |  |  |  |  |
| PRO-SL-1DL-100 |  | 1ST Material Delivery for Lighting Cables of Street Lighting Network | 6d | 2027-01-11 | 2027-01-17 | PRO-SL-MF-100 | -53.5d | 0d |  |
|  | 2 | **Lighting Poles Works** |  | 2027-01-11 | 2027-02-27 |  |  |  |  |
| PRO-SL-1DL-110 |  | 1ST Material Delivery for Lighting Poles Foundations of Street Lighting Network | 6d | 2027-01-11 | 2027-01-17 | PRO-SL-MF-110 | -82.5d | 0d |  |
| PRO-SL-1DL-120 |  | 1ST Material Delivery for Lighting Poles of Street Lighting Network | 6d | 2027-01-11 | 2027-01-17 | PRO-SL-MF-120 | -48.5d | 0d |  |
| PRO-SL-1DL-140 |  | 1ST Material Delivery for Lighting Fixtures of Street Lighting Network | 6d | 2027-02-18 | 2027-02-27 | PRO-SL-MF-140 | -35.75d | 0d |  |
|  | 3 | **Distribution Panel Board** |  | 2027-02-06 | 2027-02-14 |  |  |  |  |
| PRO-SL-1DL-160 |  | 1ST Material Delivery for Distrubution Panel Boards of Street Lighting Network | 6d | 2027-02-06 | 2027-02-14 | PRO-SL-MF-160 | -39d | 0d |  |
|  | 5 | **Termination and Testing Works** |  | 2027-02-02 | 2027-04-03 |  |  |  |  |
| PRO-SL-1DL-170 |  | 1ST Material Delivery for Cable Lugs of Street Lighting Network | 15d | 2027-02-02 | 2027-02-22 | PRO-SL-MF-170 | -46d | 0d |  |
| PRO-SL-1DL-130 |  | 1ST Material Delivery for Fuse Boxes of Street Lighting Network | 15d | 2027-03-16 | 2027-04-03 | PRO-SL-MF-130 | -71.88d | 0d |  |

| ID | WBS | Activity | Duration | Start | Finish | Predecessors | Total float | Free float | Resources | 01- Network |
| --- | --- | --- | --- | --- | --- | --- | --- | --- | --- | --- |
|  | 4 | **Earthing System Works** |  | 2027-03-04 | 2027-03-15 |  |  |  |  |  |
| PRO-SL-1DL-150 |  | 1ST Material Delivery for Lighting Earthing of Street Lighting Network | 6d | 2027-03-04 | 2027-03-15 | PRO-SL-MF-150 | -45d | 0d |  |  |
|  | DL | **Material Delivery & Site Inspection** |  | 2027-01-18 | 2027-05-03 |  |  |  |  |  |
|  | 1 | **Cabling Works** |  | 2027-01-18 | 2027-01-18 |  |  |  |  |  |
| PRO-R25-SL-DL-100 |  | Material Delivery & Site Inspection of Lighting Cables for Street Lighting Network | 0d | 2027-01-18 | 2027-01-18 | PRO-SL-MF-100 SS, PRO-SL-MF-100 FF, PRO-SL-1DL-100 | -53.5d | 26d | Road crossing ducts, 2 ways (2 x 150mm HDPE); Road crossing ducts, 2 ways (2 x 110mm UPVC); Road crossing ducts, 3 ways (3 x 110mm UPVC); 4C-300mm2 CU/XLPE / PVC ARMORED CABLE; 4C-240mm2 CU/XLPE / PVC ARMORED CABLE; 4C-185mm2 CU/XLPE / PVC ARMORED CABLE; 4C-50mm2 CU/XLPE / PVC ARMORED CABLE; 4C-16mm2 CU/XLPE / PVC ARMORED CABLE; 4C-16MM2 CU/XLPE / PVC CABLE; 1Cx150sq.mm2,Cu, PVC wire; 1Cx120sq.mm2,Cu, PVC wire; 1Cx95sq.mm,Cu, PVC wire; 1Cx70sq.mm2,Cu, PVC wire; 1Cx25sq.mm2,Cu, PVC wire; 1Cx16sq.mm2,Cu, PVC wire; 1Cx10sq.mm2,Cu, PVC wire; Supply and installation of KWH meter mounting frame including concrete block for installation of KWH meter | SL |
|  | 2 | **Lighting Poles Works** |  | 2027-01-18 | 2027-02-27 |  |  |  |  |  |
| PRO-R25-SL-DL-110 |  | Material Delivery & Site Inspection of Lighting Poles Foundations for Street Lighting Network | 18d | 2027-01-18 | 2027-02-07 | PRO-SL-MF-110 SS, PRO-SL-MF-110 FF, PRO-SL-1DL-110 | -82.5d | 0d |  |  |
| PRO-R25-SL-DL-120 |  | Material Delivery & Site Inspection of Lighting Poles for Street Lighting Network | 0d | 2027-01-18 | 2027-01-18 | PRO-SL-1DL-120, PRO-SL-MF-120 | -48.5d | 34d | Lighting poles with 1 arm, height of (12) meters, including the power distribution box, cables, and RCC foundation.; Lighting poles with 2 arms, height of (12) meters, including the power distribution box, cables, and RCC foundation. | SL |
| PRO-R25-SL-DL-140 |  | Material Delivery & Site Inspection of Lighting Fixtures for Street Lighting Network | 0d | 2027-02-27 | 2027-02-27 | PRO-SL-MF-140, PRO-SL-1DL-140 | -35.75d | 47.75d | Street Lighting( LED) Luminaire of Output ? 20,965 lumen complete with control gear and lamp, (129.1) WATT. | SL |
|  | 3 | **Distribution Panel Board** |  | 2027-02-14 | 2027-02-14 |  |  |  |  |  |
| PRO-R25-SL-DL-160 |  | Material Delivery & Site Inspection of Distrubution Panel Boards for Street Lighting Network | 0d | 2027-02-14 | 2027-02-14 | PRO-SL-MF-160, PRO-SL-1DL-160 | -39d | 44.5d | Street Lighting panels LCP (01) | SL |
|  | 4 | **Termination and Testing Works** |  | 2027-02-23 | 2027-05-03 |  |  |  |  |  |
| PRO-R25-SL-DL-170 |  | Material Delivery & Site Inspection of Cable Lugs for Street Lighting Network | 26d | 2027-02-23 | 2027-03-31 | PRO-SL-MF-170, PRO-SL-1DL-170 | -46d | 31.5d |  |  |
| PRO-R25-SL-DL-130 |  | Material Delivery & Site Inspection of Fuse Boxes for Street Lighting Network | 26d | 2027-04-03 | 2027-05-03 | PRO-SL-MF-130, PRO-SL-1DL-130 | -71.88d | 3.62d |  |  |
|  | 5 | **Earthing System Works** |  | 2027-03-16 | 2027-03-16 |  |  |  |  |  |
| PRO-R25-SL-DL-150 |  | Material Delivery & Site Inspection of Lighting Earthing for Street Lighting Network | 0d | 2027-03-16 | 2027-03-16 | PRO-SL-MF-150, PRO-SL-1DL-150 | -45d | 38.5d | Including earthing of lighting poles, masts, feeder pillars, unit substations and LV feeders. | SL |
|  | TE | **Telecom Network** |  | 2026-10-06 | 2027-01-23 |  |  |  |  |  |
|  | PO | **Issuance of Purchase Orders** |  | 2026-10-06 | 2026-10-12 |  |  |  |  |  |
|  | 1 | **Ducts Works** |  | 2026-10-06 | 2026-10-12 |  |  |  |  |  |
| PRO-TE-PO-100 |  | Issuance of Purchase Order for Ducts forTelecom Network | 6d | 2026-10-06 | 2026-10-12 | ENG-MT-TE-A-100, ENG-SH-CTV-S-100 | -28.75d | 0d |  |  |
|  | 3 | **Manholes Works** |  | 2026-10-06 | 2026-10-12 |  |  |  |  |  |
| PRO-TE-PO-110 |  | Issuance of Purchase Order for Manholes forTelecom Network | 6d | 2026-10-06 | 2026-10-12 | ENG-MT-TE-A-110, ENG-SH-CTV-S-100 | -46.75d | 0d |  |  |
|  | 2 | **CCTV System Wroks** |  | 2026-10-06 | 2026-10-12 |  |  |  |  |  |
| PRO-CTV-PO-100 |  | Issuance of Purchase Order for Civil and Finishes Works of CCTV Complete System | 6d | 2026-10-06 | 2026-10-12 | ENG-MT-CTV-A-100, ENG-SH-CTV-S-100 | -32d | 0d |  |  |

| ID | WBS | Activity | Duration | Start | Finish | Predecessors | Complete | Planned start | Planned finish | Total float | Free float | Calendar | Resources | 01- Network |
| --- | --- | --- | --- | --- | --- | --- | --- | --- | --- | --- | --- | --- | --- | --- |
|  | MF | **Manufacturing of Material** |  | 2026-10-13 | 2027-01-10 |  |  |  |  |  |  |  |  |  |
|  | 1 | **Ducts Works** |  | 2026-10-13 | 2026-12-11 |  |  |  |  |  |  |  |  |  |
| PRO-TE-MF-100 |  | Manufacturing of Ducts for Telecom Network | 60d | 2026-10-13 | 2026-12-11 | PRO-TE-PO-100 |  |  |  | -35d | 0d | PROCUREMENT MODON3 |  |  |
|  | 3 | **Manholes Works** |  | 2026-10-13 | 2027-01-10 |  |  |  |  |  |  |  |  |  |
| PRO-TE-MF-110 |  | Manufacturing of Manholes for Telecom Network | 90d | 2026-10-13 | 2027-01-10 | PRO-TE-PO-110 |  |  |  | -56d | 0d | PROCUREMENT MODON3 |  |  |
|  | 2 | **CCTV System Wroks** |  | 2026-10-13 | 2027-01-10 |  |  |  |  |  |  |  |  |  |
| PRO-CTV-MF-100 |  | Manufacturing of Civil and Finishes Works for CCTV Complete System | 90d | 2026-10-13 | 2027-01-10 | PRO-CTV-PO-100 |  |  |  | -39d | 0d | PROCUREMENT MODON3 |  |  |
|  | 1DL | **1st Material Delivery & Site Inspection** |  | 2026-12-12 | 2027-01-21 |  |  |  |  |  |  |  |  |  |
|  | 1 | **Ducts Works** |  | 2026-12-12 | 2026-12-17 |  |  |  |  |  |  |  |  |  |
| PRO-TE-1DL-100 |  | 1ST Material Delivery for Ducts of Telecom Network | 6d | 2026-12-12 | 2026-12-17 | PRO-TE-MF-100 |  |  |  | -30d | 0d |  |  |  |
|  | 3 | **Manholes Works** |  | 2027-01-11 | 2027-01-17 |  |  |  |  |  |  |  |  |  |
| PRO-TE-1DL-110 |  | 1ST Material Delivery for Manholes of Telecom Network | 6d | 2027-01-11 | 2027-01-17 | PRO-TE-MF-110 |  |  |  | -48d | 0d |  |  |  |
|  | 2 | **CCTV System Wroks** |  | 2027-01-11 | 2027-01-21 |  |  |  |  |  |  |  |  |  |
| PRO-CTV-1DL-100 |  | 1ST Material Delivery for Civil and Finishes Works of CCTV Complete System | 10d | 2027-01-11 | 2027-01-21 | PRO-CTV-MF-100 |  |  |  | -33d | 0d |  |  |  |
|  | DL | **Material Delivery & Site Inspection** |  | 2026-12-19 | 2027-01-23 |  |  |  |  |  |  |  |  |  |
|  | 1 | **Ducts Works** |  | 2026-12-19 | 2026-12-19 |  |  |  |  |  |  |  |  |  |
| PRO-R25-TE-DL-100 |  | Material Delivery & Site Inspection for Ducts of Telecom Network | 0d | 2026-12-19 | 2026-12-19 | PRO-TE-MF-100 SS+13d, PRO-TE-MF-100 FF, PRO-TE-1DL-100 |  |  |  | -30d | 54.5d |  | 2-ways ducts, 50mm diameter; 6-ways ducts, 110mm diameter; 9-ways ducts, 6 x 160mm & 2 x 100mm; 6 PVC ducts 150x200 mm (60mm diameter); 6 PVC ducts 600x800 mm (120mm diameter); 6 PVC ducts 800x800 mm (170mm diameter) | TE |
|  | 3 | **Manholes Works** |  | 2027-01-18 | 2027-01-18 |  |  |  |  |  |  |  |  |  |
| PRO-R25-TE-DL-110 |  | Material Delivery & Site Inspection of Manholes for Telecom Network | 0d | 2027-01-18 | 2027-01-18 | PRO-TE-MF-110 SS+15d, PRO-TE-MF-110 FF, PRO-TE-1DL-110 |  |  |  | -48d | 36.5d |  | Manhole Type 2 (1600 x 1600 x 2000); Manhole Type 3 (1200 x 1200 x 2000) | TE |
|  | 2 | **CCTV System Wroks** |  | 2027-01-23 | 2027-01-23 |  |  |  |  |  |  |  |  |  |
| PRO-R25-CTV-DL-100 |  | Material Delivery & Site Inspection of for Civil and Finishes Works of CCTV Complete System | 0d | 2027-01-23 | 2027-01-23 | PRO-CTV-MF-100, PRO-CTV-1DL-100, PRO-CTV-1DL-100 FF |  |  |  | -33d | 51.5d |  | 6 PVC ducts 200x150 mm (60mm diameter); 2-ways ducts, 50mm diameter | TE |
|  | 1 | **Superstructure Works** |  | 2026-01-29 | 2027-01-04 |  |  |  |  |  |  |  |  |  |
|  | 1 | **Issuance of Purchase Orders** |  | 2026-01-29 | 2026-10-26 |  |  |  |  |  |  |  |  |  |
|  | SL | **Pump Stations** |  | 2026-01-29 | 2026-02-01 |  |  |  |  |  |  |  |  |  |
| PRO-SPS-CV-PO-10 |  | Issuance of Purchase Order for Civil Works for Pump Stations | 3.25d | 2026-01-29 A | 2026-02-01 A | ENG-MT-PS-CV-A-150 | 100% | 2026-01-29 | 2026-02-02 |  |  |  |  |  |

| ID | WBS | Activity | Duration | Start | Finish | Predecessors | Complete | Planned start | Planned finish | Total float | Free float | Calendar |
| --- | --- | --- | --- | --- | --- | --- | --- | --- | --- | --- | --- | --- |
|  | SL1 | **Lift Station** |  | 2026-01-29 | 2026-02-01 |  |  |  |  |  |  |  |
| PRO-LS-CV-PO-20 |  | Issuance of Purchase Order for Civil Works for Lift Stations | 3.25d | 2026-01-29 A | 2026-02-01 A | ENG-MT-SLS-CV-A-110 | 100% | 2026-01-29 | 2026-02-02 |  |  |  |
|  | SL11 | **Storage Tank (TSE)** |  | 2026-10-14 | 2026-10-26 |  |  |  |  |  |  |  |
| PRO-TSE-CV-PO-30 |  | Issuance of Purchase Order for Civil Works for Storage Tank (TSE) | 11d | 2026-10-14 | 2026-10-26 | ENG-MT-TSE-CV-A-140, ENG-MT-TSE-CV-S-130 |  |  |  | -75.75d | 0d |  |
|  | TE | **Storm Drainage Ponds** |  | 2026-06-23 | 2026-07-04 |  |  |  |  |  |  |  |
| PRO-DPO-CV-PO-10 |  | Issuance of Purchase Order for Civil Works for Storm Drainage Ponds | 10d | 2026-06-23 A | 2026-07-04 A | ENG-MT-DPO-CV-A-110 | 100% |  |  |  |  |  |
|  | SL12 | **Gaurd Room** |  | 2026-10-06 | 2026-10-18 |  |  |  |  |  |  |  |
| PRO-GR-CV-PO-40 |  | Issuance of Purchase Order for Civil Works for Gaurd Room | 10.5d | 2026-10-06 | 2026-10-18 | ENG-MT-GR-CV-A-130 |  |  |  | -63.25d | 0d |  |
|  | SL121 | **Fence** |  | 2026-08-15 | 2026-08-27 |  |  |  |  |  |  |  |
| PRO-FE-CV-PO-50 |  | Issuance of Purchase Order for Civil Works for Fence | 9.85d | 2026-08-15 A | 2026-08-27 A | ENG-MT-FE-CV-A-120 SS | 100% | 2026-09-15 | 2026-09-27 |  |  |  |
|  | 2 | **Manufacturing of Material** |  | 2026-07-05 | 2027-01-03 |  |  |  |  |  |  |  |
|  | SL | **Pump Stations** |  | 2026-10-06 | 2026-11-14 |  |  |  |  |  |  |  |
| PRO-SPS-CV-MF-10 |  | Manufacturing of Civil Works for Pump Stations | 40d | 2026-10-06 | 2026-11-14 | PRO-SPS-CV-PO-10 |  |  |  | -77d | 8d | PROCUREMENT MODON3 |
|  | SL1 | **Lift Station** |  | 2026-10-06 | 2026-11-14 |  |  |  |  |  |  |  |
| PRO-LS-CV-MF-30 |  | Manufacturing of Civil Works for Civil Works for Lift Stations | 40d | 2026-10-06 | 2026-11-14 | PRO-LS-CV-PO-20 |  |  |  | -5d | 10d | PROCUREMENT MODON3 |
|  | TE | **Storm Drainage Ponds** |  | 2026-07-05 | 2026-09-02 |  |  |  |  |  |  |  |
| PRO-DPO-CV-MF-10 |  | Manufacturing of Civil Works for Storm Drainage Ponds | 60d | 2026-07-05 A | 2026-09-02 A | PRO-DPO-CV-PO-10 | 100% |  |  |  |  | PROCUREMENT MODON3 |
|  | SL11 | **Storage Tank (TSE)** |  | 2026-10-27 | 2026-12-05 |  |  |  |  |  |  |  |
| PRO-TSE-CV-MF-40 |  | Manufacturing of Civil Works for Civil Works for Storage Tank (TSE) | 40d | 2026-10-27 | 2026-12-05 | PRO-TSE-CV-PO-30 |  |  |  | -90d | 0d | PROCUREMENT MODON3 |
|  | SL12 | **Gaurd Room** |  | 2026-10-18 | 2026-11-27 |  |  |  |  |  |  |  |
| PRO-GR-CV-MF-50 |  | Manufacturing of Civil Works for Civil Works for Gaurd Room | 40d | 2026-10-18 | 2026-11-27 | PRO-GR-CV-PO-40 |  |  |  | -75.5d | 0.5d | PROCUREMENT MODON3 |
|  | SL121 | **Fence** |  | 2026-09-05 | 2026-09-10 |  |  |  |  |  |  |  |
| PRO-FE-CV-MF-60 |  | Manufacturing of Civil Works for Civil Works for Fence | 20d | 2026-09-05 A | 2026-09-10 A | PRO-FE-CV-PO-50 FF, ENG-SH-GR-A-200_R | 100% | 2026-09-27 | 2026-10-17 |  |  | PROCUREMENT MODON3 |
|  | SL1211 | **Softscape and Planting Works** |  | 2026-10-06 | 2027-01-03 |  |  |  |  |  |  |  |
| PRO-FE-CV-MF-70 |  | Manufacturing of Civil Works for Softscape and Planting Works | 90d | 2026-10-06 | 2027-01-03 | ENG-MT-PL-CV-A-160, ENG-SH-MRK-A-110 |  |  |  | -43d | 0d | PROCUREMENT MODON3 |

| ID | WBS | Activity | Duration | Start | Finish | Predecessors | Complete | Remaining | Planned start | Planned finish | Total float | Free float | Resources | 01- Network | 13 BUILDINGS |
| --- | --- | --- | --- | --- | --- | --- | --- | --- | --- | --- | --- | --- | --- | --- | --- |
|  | 3 | **1st Material Delivery & Site Inspection** |  | 2026-08-03 | 2026-12-10 |  |  |  |  |  |  |  |  |  |  |
|  | SL | **Pump Stations** |  | 2026-11-23 | 2026-11-24 |  |  |  |  |  |  |  |  |  |  |
| PRO-SPS-CV-1DL-10 |  | 1ST Material Delivery for Civil Works for Pump Stations | 2d | 2026-11-23 | 2026-11-24 | PRO-SPS-CV-MF-10, CO-SW-ML-150, ENG-SH-SPS-A-160 |  |  |  |  | -72d | 0d |  |  |  |
|  | SL1 | **Lift Station** |  | 2026-11-25 | 2026-11-25 |  |  |  |  |  |  |  |  |  |  |
| PRO-LS-CV-1DL-40 |  | 1ST Material Delivery for Civil Works for Civil Works for Lift Stations | 1d | 2026-11-25 | 2026-11-25 | PRO-LS-CV-MF-30, CO-UB-PS-100 |  |  |  |  | -13d | 0d |  |  |  |
|  | TE | **Drainage Ponds** |  | 2026-08-03 | 2026-08-22 |  |  |  |  |  |  |  |  |  |  |
| PRO-DPO-CV-1DL-10 |  | 1ST Material Delivery for Civil Works for Drainage Ponds | 30d | 2026-08-03 A | 2026-08-22 A | PRO-DPO-CV-MF-10 | 100% |  | 2026-09-03 | 2026-10-08 |  |  |  |  |  |
|  | SL11 | **Storage Tank (TSE)** |  | 2026-12-06 | 2026-12-06 |  |  |  |  |  |  |  |  |  |  |
| PRO-TSE-CV-1DL-50 |  | 1ST Material Delivery for Civil Works for Civil Works for Storage Tank (TSE) | 1d | 2026-12-06 | 2026-12-06 | PRO-TSE-CV-MF-40 |  |  |  |  | -76d | 0d |  |  |  |
|  | SL12 | **Gaurd Room** |  | 2026-11-28 | 2026-12-10 |  |  |  |  |  |  |  |  |  |  |
| PRO-GR-CV-1DL-60 |  | 1ST Material Delivery for Civil Works for Civil Works for Gaurd Room | 12d | 2026-11-28 | 2026-12-10 | PRO-GR-CV-MF-50 |  |  |  |  | -64d | 0d |  |  |  |
|  | SL121 | **Fence** |  |  |  |  |  |  |  |  |  |  |  |  |  |
|  | 4 | **Material Delivery & Site Inspection** |  | 2026-08-02 | 2027-01-04 |  |  |  |  |  |  |  |  |  |  |
|  | SL | **Pump Stations** |  | 2026-08-02 | 2026-11-25 |  |  |  |  |  |  |  |  |  |  |
| PRO-SPS-CV-DL-10 |  | Material Delivery & Site Inspection for Civil Works for Pump Stations | 0d | 2026-08-02 A | 2026-11-25 | PRO-SPS-CV-MF-10 FF, PRO-SPS-CV-1DL-10 FF | 20% | 0d | 2026-08-04 | 2026-08-04 | -72d | 0d | Price | UB | PUMP |
|  | SL1 | **Lift Station** |  | 2026-11-26 | 2026-11-26 |  |  |  |  |  |  |  |  |  |  |
| PRO-LS-CV-DL-50 |  | Material Delivery & Site Inspection for Civil Works for Lift Stations | 0d | 2026-11-26 | 2026-11-26 | PRO-LS-CV-MF-30, PRO-LS-CV-1DL-40, CO-UB-PS-100 |  |  |  |  | -13d | 1d | Price | UB | LIFT |
|  | TE | **Storm Drainage Ponds** |  | 2026-08-02 | 2026-09-01 |  |  |  |  |  |  |  |  |  |  |
| PRO-DPO-CV-DL-10 |  | Material Delivery & Site Inspection for Civil Works for Storm Drainage Ponds | 0d | 2026-08-02 A | 2026-09-01 A | PRO-DPO-CV-MF-10, PRO-DPO-CV-MF-10 SS, PRO-DPO-CV-1DL-10 | 100% |  | 2026-10-10 | 2026-10-10 |  |  | Finished grouted riprap for Pond 300mm as per drawings | UB |  |
|  | SL11 | **Storage Tank (TSE)** |  | 2026-12-06 | 2026-12-06 |  |  |  |  |  |  |  |  |  |  |
| PRO-TSE-CV-DL-60 |  | Material Delivery & Site Inspection for Civil Works for Storage Tank (TSE) | 0d | 2026-12-06 | 2026-12-06 | PRO-TSE-CV-MF-40 |  |  |  |  | -75d | 1d | Glass Fused Bolted (GLS) 1500 m3 Tank with associated accessories & manufacturer recommendation for the foundation | PW |  |
|  | SL12 | **Gaurd Room** |  | 2026-12-12 | 2026-12-12 |  |  |  |  |  |  |  |  |  |  |
| PRO-GR-CV-DL-70 |  | Material Delivery & Site Inspection for Civil Works for Gaurd Room | 0d | 2026-12-12 | 2026-12-12 | PRO-GR-CV-MF-50 SS+2d, PRO-GR-CV-MF-50 FF, PRO-GR-CV-1DL-60 |  |  |  |  | -64d | 0d | Slab on Grade; Slabs; Lightweight Concrete Roof insulation as per Architect's specification; Insulated brickwork. with expanded polystyrene 200mm thick; vertical straight wall complete with accessories .; Common brickwork. 150mm thick; vertical straight wall complete with accessories.; 2 perpendicular layers of cold bitumen coats; 2 layer of 4mm HDPE membrane, 2 perpendicular layers cold bitumen coats; 1 layer EPOXY Paint 300 micron; Membrane fully bonded to prime deck and upstand; Geotextile Filter membrane uv resistance; 85mm thick thermal insulation; 1.5mm thick epdm waterproofing membrane; CW01 - 4500 mm width x 3700 mm height; CW02 - 4500 mm width x 3700 mm height; CW03 - 4500 mm width x 3700 mm height; CW04 - 4500 mm width x 3700 mm height; CW05 - 7500 mm width x 4250 mm height; CW06 - 7500 mm width x 4250 mm height; W01 - 1000 mm width x 2000 mm height; W02 - 2000 mm width x 2000 mm height; W03 - 2000 mm width x 1000 mm height; D2 - 900 mm x 2200 mm height temper door; D3 - 950 mm x 2000 mm height temper door; Supply and install 300*300mm terrazzo tiles with 150mm high skirting at perimeter with approv; Supply and install 300*300mm glazed ceramic wall tiles on cement mortar and including rough; Supply and install internal plastering and 2 coats of acrylic paint at walls includin; Supply and install 300*300mm glazed ceramic wall tiles on cement mortar and including rough and smooth p; Supply and install 600*600mm porcelain tiles with approved quality on 30 mm mortar inclu; Supply and install 12.5mm thk, gypsum board suspended ceiling including s; Office Chairs; Office Tables; Guard Stand; Magnetic Control Access barrier, Automatic Vehicular Barriers to be installed on ground with magnetic access; Supply and install Hand Wash Basin with Water Tap, angle valve, P-trap connected to 50mm diameter s; Supply and install paper towel dispenser, surface mounted, satin finish stainless steel as per approv; Supply and install mirror, size 460*910mm as per approved sample including frames, backing and all accessories to complete.; Supply and install towel ring , surface mounted, satin finish stainless steel as per approved sample including accessories.; Kitchen sink with single bowl with hot/cold water mixer.; Supply and install Base mounted flush tank water Western water closet system with lid connected to 110mm soil pipe; Gate Valves; Slow Closing Valve; 1 meter length 10mm diameter Flexible Hose with insulated handle complete with fork support, index push, vacuum breaker; 50mm diameter; 75mm diameter; 80mm diameter; 100mm diameter; 110mm diameter; 13mm diameter; 15mm diameter; 20mm diameter; 25mm diameter; 32mm diameter; 40mm diameter; Isolation Valve Size 20; Isolation Valve Size 25; Isolation Valve Size 32; Isolation Valve Size 40; Isolation Valve Size 50; 20 mm diameter spray head for cold water supply; Supply and install Electric Water Heater set with connection; Water meter complete with accessories.; Roof drain; Vent on a roof to exhaust air; Floor drain 100x80mm; Gully trap 300x300 mm; inspection chamber, size 800x900x1000; Mini split actual capacity 2 Ton; Ducted split actual capacity 4 Ton; Supply, fabricate, install and testing factory fabricated metal ducts with flanges complete with supports, vanes,; Supplying, installation testing & commissioning of external insulation on ducts; Supply, fix, testing and commissioning of exhaust air/fresh air louvers of powder coated extruded aluminium construction.; Providing, fixing, testing and commissioning of powder coated extruded aluminum sections grills and diffusers with dampers.; Air Grills 150mm x150mm; Air Diffuser 600mm x 600mm; Supply, Installation & Testing of 2 hours Fire rated system for closing the openings between roo; 4.5 KG CO2 Type Fire Extinguishers; 6 KG ABC Type Fire Extinguishers; Floor cleanout, size 75 mm diameter; Floor cleanout, size 110 mm diameter; GRP water tanks capacity of each 1000 liter complete with all fittings, all valves and concrete pad; Guard Room 1; Guard Room 2; Guard Room 3; 30A, 2P AC Disconnect Switch; 20A Duplex Receptacle Floor Mounted; Twin Socket outlet; Twin Socket outlet, Weather Proof; Single gang Lighting switch; 2way Single gang Lighting switch; 36W LED linear Pendant lighting; 36W LED Emergency linear Pendant lighting; 13W recess mounted LED down light fitting; 13W recess emergency mounted LED down light fitting with 1.5 Hr Battery; 10.4W LED Exit light with 1.5 Hr Battery; 4mm2 Cu./FRLSZH Cable; 6mm2 Cu./FRLSZH Cable; 8 Port Industrial PoE Switch 10/100BaseT (0 deg to +70 deg. Celsius); 06C Optical Fiber SM; 48C Optical Fiber SM; 48 Core Splice Closure; Boom Barrier at Security Guard Room; Pedestrian turnstile at Security Guard Room; Access Control Unit; Access Card Reader; Magnetic Lock; Break Glass; Exit Push button; Door Sensor; Biometrics Reader; Pole/Bollard mounted IP( PoE), Automatic Number Plate Recognition (ANPR, camera, 5MP,IP 66, IR illumin; 12U rack dimension (W x H x L) 600 x 625 x 600 mm; Fire Alarm Control panel with fire alarm zoning with Mimic panel with fire alarm zoning; Main Fire Alarm Control panel with fire alarm zoning with Mimic panel with fire alarm zoning; Supply and installation of the addressable manual call point with operation safety glass breaking and pushbutton; Supply and installation of the photoelectric heat & smoke detector with base; Sounder With Beacon; Addressable Control module for Sounders; Addressable Control module for HVAC System; Addressable Monitor module for HVAC System; 2C x 1.5 Sqm FR Rated Armored - Cable For Loop Wiring; DACT (Auto - Dailer) for 24x7 Civil Defence; Transmission Communication cable - Fiber Optics 12Core; Transmission Communication cable - Ethernet Cable; Supply, install to site and installation of power supply system for fire alarm control panel; Supply, install to site and installation of power cable; Fire Fighter’s Telephone Centre; Fireman’s Telephone Jack; Voice Command Center | GR&FE |  |
|  | SL121 | **Fence** |  | 2026-08-02 | 2026-10-06 |  |  |  |  |  |  |  |  |  |  |
| PRO-FE-CV-DL-80 |  | Material Delivery & Site Inspection for Civil Works for Fence | 0d | 2026-08-02 A | 2026-10-06 | PRO-FE-CV-MF-60 | 80% | 0d | 2026-07-25 | 2026-07-25 | -42d | 0d | 100 mm thickness lean concrete under the foundation; Foundation; Walls; Beams; Columns; Common brickwork. 300mm thick; vertical straight wall complete with accessories.; Two Layers of Bituminous Coating; 20x20 Approved Polysulfide Joint Sealant; Supply and install 33mm thick Lexan cladding blue complete with necessary framings; Supply and install 50mm thick random cut stone cladding complete with 600m; Supply and install External plastering to walls and columns min. 15mm thick with cement mortar of specified grade including; Supply and install 2 coats of weatherproof paint at walls including one prime coat and; Guard room coping 350mm; Guard room coping 450mm; Stone coping 500mm; Stone coping 525mm; Supply and install MODON Signage with Logo Type 1; Supply and install MODON Signage Type 2; Supply and install "Triangle Style" signage; Junction Box for lighting fixture; Trench excavation to receive 2 nos 50mm diameter PVC Conduit, sand bedding and embedded with sa; Supply, Install, fixings, testing and commissioning 80W LED Projector waterproof DJ effect light including c; Earth Pit; Grounding rod 20mmX3m; Grounding rod with Pit 20mmX3m; Earthing Bar; 120mm2 Tinned copper wire; IR Intrusion Detection System Quad Beams (Tx & Rx) (SL-350 QDM); Control cable; CAT6A cable; Field Equipment Cabinet enclosed outdoor complete with precast concrete footing, suitable for parame; Supply and install 800mm x 800mm x 800mm height concrete handhole with bituminous paint all aroun; 800mm depth minimum Trench excavation to receive 3 nos 50mm diameter PVC Conduit with spacer, sand bedding an; Hot dipped galvanized cable conduits for CAT6A cable and Control Cables embedded to wall; 400V, 3PH, 60Hz lighting control panel (LCP-02); 38W, 230V, 1PH, 60Hz fence, led linear uplight lighting, IP66; 4C-16mm2 CU/XLPE/PVC direct buried armored cable; 4C-10mm2 CU/XLPE/PVC direct buried armored cable; 16mm2 CU/PVC wire; 10mm2 CU/PVC wire | GR&FE |  |

| ID | WBS | Activity | Duration | Start | Finish | Predecessors | Total float | Free float | Calendar | Resources | 01- Network | 13 BUILDINGS |
| --- | --- | --- | --- | --- | --- | --- | --- | --- | --- | --- | --- | --- |
|  | SL1211 | **Softscape and Planting Works** |  | 2027-01-04 | 2027-01-04 |  |  |  |  |  |  |  |
| PRO-FE-CV-DL-90 |  | Material Delivery & Site Inspection for Softscape and Planting Works | 0d | 2027-01-04 | 2027-01-04 | PRO-FE-CV-MF-70 | -37d | 24d |  | Price | UB | LS |
|  | LL | **Long Lead Time Items** |  | 2026-10-06 | 2027-04-17 |  |  |  |  |  |  |  |
|  | 2 | **Infrastructure Networks** |  | 2026-10-06 | 2027-02-15 |  |  |  |  |  |  |  |
|  | 2 | **CCTV System Wroks of Telecom Network** |  | 2026-10-06 | 2027-02-15 |  |  |  |  |  |  |  |
|  | 3 | **Issuance of Purchase Orders** |  | 2026-10-06 | 2026-10-28 |  |  |  |  |  |  |  |
| PRO-CTV-LL-PO-10 |  | Issuance of Purchase Order for Low Current Works of CCTV Complete System with All Accessories | 20d | 2026-10-06 | 2026-10-28 | ENG-MT-CTV-A-110 | -46d | 0d |  |  |  |  |
|  | 1 | **Manufacturing of Material** |  | 2026-10-29 | 2027-01-26 |  |  |  |  |  |  |  |
| PRO-CTV-LL-MF-10 |  | Manufacturing of Low Current Works for CCTV Complete System with All Accessories | 90d | 2026-10-29 | 2027-01-26 | PRO-CTV-LL-PO-10 | -55d | 0d | PROCUREMENT MODON3 |  |  |  |
|  | 2 | **Material Shipping/Custom Clearance/Delivery** |  | 2027-01-27 | 2027-02-15 |  |  |  |  |  |  |  |
| PRO-CTV-LL-SH/DL-10 |  | Material Delivery for Low Current Works of CCTV Complete System with All Accessories | 15d | 2027-01-27 | 2027-02-15 | PRO-CTV-LL-MF-10 | -47d | 0d |  |  |  |  |
|  | 4 | **Material Site Inspection** |  | 2027-02-15 | 2027-02-15 |  |  |  |  |  |  |  |
| PRO-CTV-LL-MSI-10 |  | Material Site Inspection for Low Current Works of CCTV Complete System with All Accessories | 0d | 2027-02-15 | 2027-02-15 | PRO-CTV-LL-SH/DL-10 | -47d | 37.5d |  | NVR Server with RAID (5, 6 or 10) to record all cameras storage 80TB with all hardware / software / licenses etc.; VMS Server with RAID (5, 6 or 10) complete Hardware / Software with one Color Laser Printer and all associated; Licenses for Cameras, Workstations and Keyboards; Work Station (MMI with two monitors each, for Monitoring for CCTV & ACS); Keyboard with joystick for CCTV with all accessories as per specification; Pole mounted IP( PoE) Fixed camera, 5MP,IP 66, IR illumination, 3-8mm varifocal, auto iris lens type; Wall mounted IP( PoE) Fixed camera, 5MP,IP 66, IR illumination, 3-8mm varifocal, auto iris lens type; 5MP Dome camera ceiling Mounted IP (PoE) indoor; 5MP PTZ Multi Sensor Camera IP(PoE) 360 Degree View Outdoor with accessories (IP 66); 8 Port Industrial PoE Switch 10/100BaseT (0 deg to +70 deg. Celsius); Filed Equipment cabinet (FEC), with fan and ventilation, NEMEX 4X ,door, minimum size (600x600x400mm); IP Phone Communication server (hot standby) 50 Port equipped, Gateway, Gatekeeper, H.323, SIP, redundant Power etc.; IP Phone Voice gateway; Voice IP Phone; NMS Server for IP phone and NETWORK Elements; NMS Workstation; Firm Ware, software & licenses; Data Cable; Power Cable; Layer 3, 24 Port non-PoE switch10/1000BaseT/LX (-40 deg to +70 deg. Celsius), stack module and associated; Layer 2, 24 Port non-PoE switch10/1000BaseT (-40 deg to +70 deg. Celsiu; Network Management System Server; Network Management System workstation; 42U rack dimension (W x H x L) 800 x 2000 x 1000 mm; 12U rack dimension (W x H x L) 600 x 625 x 600 mm; 06C Optical Fiber SM; 48C Optical Fiber SM; 48 Core Splice Closure; Optical fiber patch cord 5m; Data Cable (STP CAT 6A); 3C Power Cable armored 1.5mm2; 3C Power Cable armored 2.5 mm2; UTP CAT6A Patch Cord 1m/3m/5m; Access Control Unit; Access Card Reader; Magnetic Lock; Break Glass; Exit Push button; Door Sensor; Biometrics Reader; Smart Card Printer; Card Issue Work Station; Photographic Camera with stand; Interface modules with CCTV, Fire and other systems | TE |  |
|  | 1 | **Superstructure Works** |  | 2026-10-15 | 2027-04-17 |  |  |  |  |  |  |  |
|  | SL | **Pump Stations** |  | 2026-10-15 | 2027-04-13 |  |  |  |  |  |  |  |
|  | 1 | **Issuance of Purchase Orders** |  | 2026-10-15 | 2026-11-18 |  |  |  |  |  |  |  |
| PRO-SPS-LL-PO-10 |  | Issuance of Purchase Order for Electromechanical Works for Pump Stations | 30d | 2026-10-15 | 2026-11-18 | ENG-MT-SPS-MC-A-110 | -56.75d | 0d |  |  |  |  |
|  | 2 | **Manufacturing of Material** |  | 2026-11-19 | 2027-01-17 |  |  |  |  |  |  |  |
| PRO-SPS-LL-MF-10 |  | Manufacturing of Electromechanical Works for Pump Stations | 60d | 2026-11-19 | 2027-01-17 | PRO-SPS-LL-PO-10 | -67d | 0d | PROCUREMENT MODON3 |  |  |  |
|  | 3 | **Material Shipping/Custom Clearance/Delivery** |  | 2027-01-18 | 2027-02-25 |  |  |  |  |  |  |  |
| PRO-SPS-LL-SH/DL-10 |  | Material Delivery for Electromechanical Works for Pump Stations | 30d | 2027-01-18 | 2027-02-25 | PRO-SPS-LL-MF-10 | -57d | 0d |  |  |  |  |
|  | 4 | **Material Site Inspection** |  | 2027-02-25 | 2027-04-13 |  |  |  |  |  |  |  |
| PRO-SPS-LL-MSI-10 |  | Material Site Inspection for Electromechanical Works for Pump Stations | 35d | 2027-02-25 | 2027-04-13 | PRO-SPS-LL-SH/DL-10 | -57d | 20.5d |  |  |  |  |
|  | SL1 | **Lift Stations** |  | 2026-10-15 | 2027-04-17 |  |  |  |  |  |  |  |
|  | 1 | **Issuance of Purchase Orders** |  | 2026-10-15 | 2026-11-18 |  |  |  |  |  |  |  |
| PRO-LS-LL-PO-20 |  | Issuance of Purchase Order for Electromechanical Works for Lift Stations | 30d | 2026-10-15 | 2026-11-18 | ENG-MT-SPS-MC-A-110 | -69.75d | 0d |  |  |  |  |

| ID | WBS | Activity | Duration | Start | Finish | Predecessors | Complete | Remaining | Planned start | Planned finish | Total float | Free float | Calendar | Resources | Cost | Actual cost | 01- Network | 08 Stage | Displane |
| --- | --- | --- | --- | --- | --- | --- | --- | --- | --- | --- | --- | --- | --- | --- | --- | --- | --- | --- | --- |
|  | 2 | **Manufacturing of Material** |  | 2026-11-19 | 2027-01-17 |  |  |  |  |  |  |  |  |  |  |  |  |  |  |
| PRO-LS-LL-MF-20 |  | Manufacturing of Electromechanical Works for Lift Stations | 60d | 2026-11-19 | 2027-01-17 | PRO-LS-LL-PO-20 |  |  |  |  | -82d | 0d | PROCUREMENT MODON3 |  |  |  |  |  |  |
|  | 3 | **Material Shipping/Custom Clearance/Delivery** |  | 2027-01-18 | 2027-02-25 |  |  |  |  |  |  |  |  |  |  |  |  |  |  |
| PRO-LS-LL-SH/DL-20 |  | Material Delivery for Electromechanical Works for Lift Stations | 30d | 2027-01-18 | 2027-02-25 | PRO-LS-LL-MF-20 |  |  |  |  | -70d | 0d |  |  |  |  |  |  |  |
|  | 4 | **Material Site Inspection** |  | 2027-02-25 | 2027-04-17 |  |  |  |  |  |  |  |  |  |  |  |  |  |  |
| PRO-LS-LL-MSI-20 |  | Material Site Inspection for Electromechanical Works for Lift Stations | 38d | 2027-02-25 | 2027-04-17 | PRO-LS-LL-SH/DL-20 |  |  |  |  | -70d | 14.5d |  |  |  |  |  |  |  |
|  | SL2 | **Storage Tank (TSE)** |  | 2026-10-15 | 2027-04-17 |  |  |  |  |  |  |  |  |  |  |  |  |  |  |
|  | 1 | **Issuance of Purchase Orders** |  | 2026-10-15 | 2026-11-18 |  |  |  |  |  |  |  |  |  |  |  |  |  |  |
| PRO-TSE-LL-PO-30 |  | Issuance of Purchase Order for Electromechanical Works for Storage Tank (TSE) | 30d | 2026-10-15 | 2026-11-18 | ENG-MT-TSE-MC-A-120 |  |  |  |  | -69.75d | 0d |  |  |  |  |  |  |  |
|  | 2 | **Manufacturing of Material** |  | 2026-11-19 | 2027-01-17 |  |  |  |  |  |  |  |  |  |  |  |  |  |  |
| PRO-TSE-LL-MF-30 |  | Manufacturing of Electromechanical Works for Storage Tank (TSE) | 60d | 2026-11-19 | 2027-01-17 | PRO-TSE-LL-PO-30 |  |  |  |  | -82d | 0d | PROCUREMENT MODON3 |  |  |  |  |  |  |
|  | 3 | **Material Shipping/Custom Clearance/Delivery** |  | 2027-01-18 | 2027-02-25 |  |  |  |  |  |  |  |  |  |  |  |  |  |  |
| PRO-TSE-LL-SH/DL-30 |  | Material Delivery for Electromechanical Works for Storage Tank (TSE) | 30d | 2027-01-18 | 2027-02-25 | PRO-TSE-LL-MF-30 |  |  |  |  | -70d | 0d |  |  |  |  |  |  |  |
|  | 4 | **Material Site Inspection** |  | 2027-02-25 | 2027-04-17 |  |  |  |  |  |  |  |  |  |  |  |  |  |  |
| PRO-TSE-LL-MSI-30 |  | Material Site Inspection for Electromechanical Works for Storage Tank (TSE) | 38d | 2027-02-25 | 2027-04-17 | PRO-TSE-LL-SH/DL-30 |  |  |  |  | -70d | 14.5d |  |  |  |  |  |  |  |
|  | CON | **Construction Works** |  | 2026-03-07 | 2027-06-07 |  |  |  |  |  |  |  |  |  |  |  |  |  |  |
|  | INF | **Infrastructure Networks** |  | 2026-03-07 | 2027-06-07 |  |  |  |  |  |  |  |  |  |  |  |  |  |  |
|  | EW | **Earthworks** |  | 2026-03-07 | 2026-10-24 |  |  |  |  |  |  |  |  |  |  |  |  |  |  |
|  | EW | **Earthworks** |  | 2026-03-07 | 2026-10-24 |  |  |  |  |  |  |  |  |  |  |  |  |  |  |
| CO-EW-200 |  | Excavation Works Upto Design Level for Earthworks-P1(Completed) | 77d | 2026-03-07 A | 2026-06-15 A | MS-CS-PS SS, MOB-30, MOB-20, MOB-80, MOB-40, MOB-50, MOB-60 FF+15d, MOB-10, MOB-70, PRE-CON-MDC-10, PRE-CON-MDC-20, PRE-CON-MDC-30, PRE-CON-MDC-40, PRE-CON-MDC-50, PRE-CON-MDC-60, PRE-CON-MDC-70, PRE-CON-MDC-80 | 100% |  |  |  |  |  |  | Excavations (including Roads , Plots and Pond) [128979]; Unskilled Labor [701.76 h]; Dozer [701.76 h]; Excavator [701.76 h]; Loader [701.76 h]; Dump Truck [1403.52 h] | 402,436.04 | 402,436.04 | RD | CON |  |
| CO-EW-210 |  | Excavation Works Upto Design Level for Earthworks-P2(Completed) | 59.25d | 2026-04-02 A | 2026-06-15 A | CO-EW-200 SS | 100% |  |  |  |  |  |  | Excavations (including Roads , Plots and Pond) [58490.3]; Unskilled Labor [336.96 h]; Dozer [336.96 h]; Excavator [336.96 h]; Loader [336.96 h]; Dump Truck [673.92 h] | 176,348.38 | 176,348.38 | RD | CON |  |
| CO-EW-220 |  | Excavation Works Upto Design Level for Earthworks-P3(Completed) | 59.25d | 2026-04-02 A | 2026-06-15 A | CO-EW-210 SS | 100% |  |  |  |  |  |  | Excavations (including Roads , Plots and Pond) [107982]; Unskilled Labor [622.08 h]; Dozer [622.08 h]; Excavator [622.08 h]; Loader [622.08 h]; Dump Truck [1244.16 h] | 325,566.24 | 325,566.24 | RD | CON |  |
| CO-EW-110 |  | Embankments Works Upto Design Level for Earthworks(Completed) | 38d | 2026-04-28 A | 2026-06-15 A | CO-EW-200 SS+10d, CO-EW-220 SS, CO-EW-220 FF | 100% |  |  |  |  |  |  | Embankments to the Site and Roads (including Roads , Plots and Pond) [98621.6]; Unskilled Labor [470.4 h]; Dozer [470.4 h]; Excavator [470.4 h]; Loader [470.4 h]; Dump Truck [940.8 h] | 674,782.44 | 674,782.44 | RD | CON | RD |
| CO-EW-110_R |  | Embankments Works Upto Design Level for Earthworks(Remaining) | 16d | 2026-08-02 A | 2026-10-24 | CO-EW-200_R SS+10d, CO-EW-220_R SS, CO-EW-220_R FF, CO-EW-110 | 81% | 16d | 2026-07-13 | 2026-08-01 | -72d | 0d |  | Embankments to the Site and Roads (including Roads , Plots and Pond) [371005]; Unskilled Labor [470 h]; Dozer [470 h]; Excavator [270 h]; Loader [470 h]; Dump Truck [870 h] | 2,419,920.17 |  | RD | CON |  |
| CO-EW-200_R |  | Excavation Works Upto Design Level for Earthworks-P1(Remaining) | 10d | 2026-08-02 A | 2026-10-17 | MS-CF-EBL FF, MS-CF-ENG FF, MS-CS-PS SS, MOB-30, MOB-20, MOB-80, MOB-40, MOB-50, MOB-60 FF+15d, MOB-10, MOB-70, PRE-CON-MDC-10, PRE-CON-MDC-20, PRE-CON-MDC-30, PRE-CON-MDC-40, PRE-CON-MDC-50, PRE-CON-MDC-60, PRE-CON-MDC-70, PRE-CON-MDC-80, CO-EW-200 | 78% | 10d | 2026-07-01 | 2026-07-13 | -72d | 0d |  | Excavations (including Roads , Plots and Pond) [177897]; Unskilled Labor [930.24 h]; Dozer [350 h]; Excavator [300 h]; Loader [400 h]; Dump Truck [650 h] | 522,497.42 |  | RD | CON |  |
| CO-EW-210_R |  | Excavation Works Upto Design Level for Earthworks-P2(Remaining) | 10d | 2026-08-02 A | 2026-10-17 | MS-CF-MOB FF, CO-EW-200_R SS, CO-EW-210, ENG-SH-HS-S-100 FS+4.35d, ENG-SH-LS-S-160_R | 78% | 10d | 2026-07-01 | 2026-07-13 | -72d | 0d |  | Excavations (including Roads , Plots and Pond) [91484.9]; Unskilled Labor [236 h]; Dozer [236 h]; Excavator [236 h]; Loader [236 h]; Dump Truck [430 h] | 275,826.95 |  | RD | CON |  |
| CO-EW-220_R |  | Excavation Works Upto Design Level for Earthworks-P3(Remaining) | 11.52d | 2026-08-02 A | 2026-10-19 | CO-EW-210_R SS, CO-EW-220 | 78% | 11.52d | 2026-07-01 | 2026-07-15 | -72d | 0d |  | Excavations (including Roads , Plots and Pond) [191968]; Unskilled Labor [1105.92 h]; Dozer [300 h]; Excavator [222 h]; Loader [322 h]; Dump Truck [650 h] | 578,784.42 |  | RD | CON |  |

| ID | WBS | Activity | Duration | Start | Finish | Predecessors | Complete | Remaining | Planned start | Planned finish | Total float | Free float | Resources | Cost | 01- Network | 08 Stage | Displane | Activity ID N |
| --- | --- | --- | --- | --- | --- | --- | --- | --- | --- | --- | --- | --- | --- | --- | --- | --- | --- | --- |
|  | SD | **Storm Drainage Network** |  | 2026-08-02 | 2027-02-15 |  |  |  |  |  |  |  |  |  |  |  |  |  |
|  | MH25-MH12 | **FROM MH-25:MH-12** |  | 2026-08-02 | 2027-01-13 |  |  |  |  |  |  |  |  |  |  |  |  |  |
|  | ML | **Main Line Sections** |  | 2026-08-02 | 2026-11-03 |  |  |  |  |  |  |  |  |  |  |  |  |  |
| CO-SD-ML-100 |  | Trench Excavation and Bedding Works for Main Lines of Storm Drainage Network | 3d | 2026-08-02 A | 2026-10-22 | CO-EW-200_R SS+10d, CO-EW-110_R SS, ENG-SH-SD-ML-A-110, ENG-MT-SD-ML-A-110, CO-EW-220_R SS, PRO-SD-1DL-110 FF, CO-EW-210_R SS | 3% | 3d | 2026-07-13 | 2026-07-16 | -70d | 1d | Depth Between 0m to 1.50m; Depth Between 0m to 1.50m [19.5]; Depth Between 1.50m to 2.50m [578.53]; Depth > 2.50m [3.08]; Depth Between 1.50m to 2.50m [112.46]; Depth Between 2.50m to 3.50m [90.09]; Depth > 3.50m [3.08]; Depth Between 2.50m to 3.50m [39.2]; Depth Between 0m to 1.50m [5.75]; Depth Between 1.50m to 2.50m [2.05]; Depth Between 2.50m to 3.50m [19.29]; Depth > 3.50m [1.44]; Depth Between 2.50m to 3.50m [24.83]; Depth Between 3.50m to 4.50m [76.14]; Depth > 4.50m [3.08]; Depth Between 3.50m to 4.50m [151.25]; Depth > 4.50m [5.13]; Unskilled Labor [96 h]; Excavator [96 h]; Skilled Labor [96 h] | 496,659.07 | SD | CON | St |  |
| CO-SD-ML-120 |  | Pipes Laying Works for Main Lines of Storm Drainage Network | 5d | 2026-08-02 A | 2026-10-28 | CO-SD-ML-100 SS, PRO-R25-SD-DL-120 SS, CO-EW-210_R SS | 3% | 5d | 2026-07-16 | 2026-07-22 | -71d | 0d | Depth Between 0m to 1.50m [35.09]; Depth Between 1.50m to 2.50m [1041.35]; Depth > 2.50m [5.54]; Depth Between 1.50m to 2.50m [202.43]; Depth Between 2.50m to 3.50m [162.17]; Depth > 3.50m [5.54]; Depth Between 2.50m to 3.50m [70.56]; Depth Between 0m to 1.50m [10.34]; Depth Between 1.50m to 2.50m [3.69]; Depth Between 2.50m to 3.50m [34.72]; Depth > 3.50m [2.59]; Depth Between 2.50m to 3.50m [44.7]; Depth Between 3.50m to 4.50m [137.05]; Depth > 4.50m [5.54]; Depth Between 3.50m to 4.50m [272.25]; Depth > 4.50m [9.24]; Unskilled Labor [448 h]; Plumber [224 h]; Excavator [224 h]; Skilled Labor [224 h] | 893,986.33 | SD | CON | St |  |
| CO-SD-ML-130 |  | Trench Backfilling and Compaction Works for Main Lines of Storm Drainage Network | 10d | 2026-08-02 A | 2026-11-03 | CO-SD-ML-120 SS, CO-EW-210_R SS, CO-EW-220_R SS, PRO-R25-SD-DL-120 SS | 3% | 10d | 2026-07-22 | 2026-08-03 | -71d | 0d | Depth Between 0m to 1.50m [15.6]; Depth Between 1.50m to 2.50m [462.82]; Depth > 2.50m [2.46]; Depth Between 1.50m to 2.50m [89.97]; Depth Between 2.50m to 3.50m [72.07]; Depth > 3.50m [2.46]; Depth Between 2.50m to 3.50m [31.36]; Depth Between 0m to 1.50m [4.6]; Depth Between 1.50m to 2.50m [1.64]; Depth Between 2.50m to 3.50m [15.43]; Depth > 3.50m [1.15]; Depth Between 2.50m to 3.50m [19.87]; Depth Between 3.50m to 4.50m [60.91]; Depth > 4.50m [2.46]; Depth Between 3.50m to 4.50m [121]; Depth > 4.50m [4.1]; Unskilled Labor [224 h]; Excavator [224 h]; JCB [224 h]; Dump Truck [224 h] | 397,327.26 | SD | CON | St |  |
|  | MH | **Manholes** |  | 2026-11-22 | 2026-12-21 |  |  |  |  |  |  |  |  |  |  |  |  |  |
| CO-SD-MH-180 |  | Trench Excavation and Bedding Works for Manholes of Storm Drainage Network | 7d | 2026-11-22 | 2026-11-30 | CO-SD-ML-120, ENG-MT-SD-ML-A-100, PRO-R25-SD-DL-100 SS, PRO-SD-MF-100, CO-EW-210_R, CO-EW-220_R, CO-EW-110_R |  |  |  |  | -89.2d | 0d | MH depth 1.5 - 2.5m [2.46]; MH depth 2.5 - 3.5m [2.01]; MH depth > 3.50m [0.22]; MH depth 2.5 -3.5m [0.22]; Unskilled Labor [56 h]; Excavator [56 h]; Skilled Labor [56 h] | 49,534.05 | SD | CON | St | CO-R26.S11-SD-180 |
| CO-SD-MH-190 |  | Install RC Footing Works for Manholes of Storm Drainage Network | 7d | 2026-11-30 | 2026-12-08 | CO-SD-MH-180, PRO-R25-SD-DL-100 |  |  |  |  | -89.2d | 0d | MH depth 1.5 - 2.5m [4.1]; MH depth 2.5 - 3.5m [3.36]; MH depth > 3.50m [0.37]; MH depth 2.5 -3.5m [0.37]; Unskilled Labor [112 h]; Plumber [56 h]; Excavator [56 h]; Skilled Labor [56 h] | 82,556.75 | SD | CON | St | CO-R26.S11-SD-190 |
| CO-SD-MH-200 |  | Install RC Wall Rings & Slab Works for Manholes of Storm Drainage Network | 4d | 2026-12-08 | 2026-12-13 | CO-SD-MH-190, PRO-R25-SD-DL-100 |  |  |  |  | -89.2d | 0d | MH depth 1.5 - 2.5m [2.46]; MH depth 2.5 - 3.5m [2.01]; MH depth > 3.50m [0.22]; MH depth 2.5 -3.5m [0.22]; Unskilled Labor [64 h]; Plumber [32 h]; Excavator [32 h]; Mobile Crane [32 h] | 49,534.05 | SD | CON | St | CO-R26.S11-SD-200 |
| CO-SD-MH-220 |  | Backfilling Works for Manholes of Storm Drainage Network | 7d | 2026-12-13 | 2026-12-21 | CO-SD-MH-200, CO-SD-ML-130 FF, ENG-SH-DPO-A-120 |  |  |  |  | -89.2d | 0d | MH depth 1.5 - 2.5m [3.28]; MH depth 2.5 - 3.5m [2.69]; MH depth > 3.50m [0.3]; MH depth 2.5 -3.5m [0.3]; Unskilled Labor [56 h]; Excavator [56 h]; JCB [56 h]; Dump Truck [56 h] | 66,045.4 | SD | CON | St | CO-R26.S11-SD-220 |
|  | CB | **Catch Basin Sections** |  | 2026-11-30 | 2027-01-13 |  |  |  |  |  |  |  |  |  |  |  |  |  |
| CO-SD-CB-140 |  | Trench Excavation and Bedding Works for Catch Basins of Storm Drainage Network | 10d | 2026-11-30 | 2026-12-12 | CO-SD-MH-180, ENG-MT-SD-CB-A-110, PRO-SD-1DL-120, PRO-SD-1DL-130, PRO-R25-SD-DL-100 |  |  |  |  | -81.2d | 8d | Single Catch Basin 1000mm x 1000mm [24.18]; Double Catch Basin 1200mm x 2300mm [0.45]; Unskilled Labor [160 h]; Excavator [160 h]; Skilled Labor [160 h] | 129,420 | SD | CON | St |  |
| CO-SD-CB-150 |  | Installation and Pipes Laying Connection Works for Catch Basins of Storm Drainage Network | 10d | 2026-12-21 | 2027-01-02 | CO-SD-CB-140, PRO-R25-SD-DL-110, PRO-R25-SD-DL-130, CO-SD-MH-220 |  |  |  |  | -89.2d | 0d | Single Catch Basin 1000mm x 1000mm [72.54]; Double Catch Basin 1200mm x 2300mm [1.34]; Unskilled Labor [320 h]; Plumber [160 h]; Excavator [160 h]; Skilled Labor [160 h] | 388,260 | SD | CON | St |  |
| CO-SD-CB-170 |  | Trench Backfilling and Compaction Works for Catch Basins of Storm Drainage Network | 10d | 2027-01-02 | 2027-01-13 | CO-SD-CB-150, CO-SD-ML-130 FF, CO-SD-MH-220, ENG-SH-DPO-A-120 |  |  |  |  | -89.2d | 0d | Single Catch Basin 1000mm x 1000mm [32.24]; Double Catch Basin 1200mm x 2300mm [0.6]; Unskilled Labor [160 h]; Excavator [160 h]; JCB [160 h]; Dump Truck [160 h] | 172,560 | SD | CON | St |  |
|  | MH25-MH121 | **FROM MH-12:MH-01** |  | 2026-10-25 | 2027-02-15 |  |  |  |  |  |  |  |  |  |  |  |  |  |
|  | ML | **Main Line Sections** |  | 2026-10-25 | 2026-12-19 |  |  |  |  |  |  |  |  |  |  |  |  |  |
| CO-SD-ML-140 |  | Trench Excavation and Bedding Works for Main Lines of Storm Drainage Network | 14d | 2026-10-25 | 2026-11-09 | CO-SD-ML-100, PRO-R25-SW-DL-100, CO-SD-ML-120 SS, CO-EW-220_R, CO-EW-110_R |  |  |  |  | -71d | 0d | Depth Between 0m to 1.50m [15.95]; Depth Between 1.50m to 2.50m [473.34]; Depth > 2.50m [2.52]; Depth Between 1.50m to 2.50m [92.01]; Depth Between 2.50m to 3.50m [73.71]; Depth > 3.50m [2.52]; Depth Between 2.50m to 3.50m [32.07]; Depth Between 0m to 1.50m [4.7]; Depth Between 1.50m to 2.50m [1.68]; Depth Between 2.50m to 3.50m [15.78]; Depth > 3.50m [1.18]; Depth Between 2.50m to 3.50m [20.32]; Depth Between 3.50m to 4.50m [62.29]; Depth > 4.50m [2.52]; Depth Between 3.50m to 4.50m [123.75]; Depth > 4.50m [4.2]; Unskilled Labor [160 h]; Excavator [160 h]; Skilled Labor [160 h] | 406,357.43 | SD | CON | St |  |
| CO-SD-ML-150 |  | Pipes Laying Works for Main Lines of Storm Drainage Network | 14d | 2026-11-10 | 2026-11-25 | CO-SD-ML-140, CO-SD-ML-120 |  |  |  |  | -71d | 0d | Depth Between 0m to 1.50m [28.71]; Depth Between 1.50m to 2.50m [852.01]; Depth > 2.50m [4.53]; Depth Between 1.50m to 2.50m [165.63]; Depth Between 2.50m to 3.50m [132.68]; Depth > 3.50m [4.53]; Depth Between 2.50m to 3.50m [57.73]; Depth Between 0m to 1.50m [8.46]; Depth Between 1.50m to 2.50m [3.02]; Depth Between 2.50m to 3.50m [28.41]; Depth > 3.50m [2.12]; Depth Between 2.50m to 3.50m [36.57]; Depth Between 3.50m to 4.50m [112.13]; Depth > 4.50m [4.53]; Depth Between 3.50m to 4.50m [222.75]; Depth > 4.50m [7.56]; Unskilled Labor [336 h]; Plumber [168 h]; Excavator [168 h]; Skilled Labor [168 h] | 731,443.36 | SD | CON | St |  |
| CO-SD-ML-160 |  | Trench Backfilling and Compaction Works for Main Lines of Storm Drainage Network | 20d | 2026-11-26 | 2026-12-19 | CO-SD-ML-150, CO-SD-ML-130, ENG-SH-DPO-A-120 |  |  |  |  | -59d | 15.2d | Depth Between 0m to 1.50m [12.76]; Depth Between 1.50m to 2.50m [378.67]; Depth > 2.50m [2.01]; Depth Between 1.50m to 2.50m [73.61]; Depth Between 2.50m to 3.50m [58.97]; Depth > 3.50m [2.01]; Depth Between 2.50m to 3.50m [25.66]; Depth Between 0m to 1.50m [3.76]; Depth Between 1.50m to 2.50m [1.34]; Depth Between 2.50m to 3.50m [12.63]; Depth > 3.50m [0.94]; Depth Between 2.50m to 3.50m [16.25]; Depth Between 3.50m to 4.50m [49.84]; Depth > 4.50m [2.01]; Depth Between 3.50m to 4.50m [99]; Depth > 4.50m [3.36]; Unskilled Labor [160 h]; Excavator [160 h]; JCB [160 h]; Dump Truck [160 h] | 325,085.94 | SD | CON | St |  |
|  | MH | **Manholes** |  | 2026-11-30 | 2027-01-06 |  |  |  |  |  |  |  |  |  |  |  |  |  |
| CO-SD-MH-230 |  | Trench Excavation and Bedding Works for Manholes of Storm Drainage Network | 9d | 2026-11-30 | 2026-12-10 | CO-SD-ML-150, CO-SD-MH-180, PRO-R25-SD-DL-100 |  |  |  |  | -74.2d | 0d | MH depth 1.5 - 2.5m [2.01]; MH depth 2.5 - 3.5m [1.79]; MH depth > 3.50m; MH depth 2.5 -3.5m [0.22]; Unskilled Labor [72 h]; Excavator [72 h]; Skilled Labor [72 h] | 39,585.75 | SD | CON | St | CO-R26.S11-SD-180 |
| CO-SD-MH-240 |  | Install RC Footing Works for Manholes of Storm Drainage Network | 7d | 2026-12-10 | 2026-12-19 | CO-SD-MH-230, CO-SD-MH-190, PRO-R25-SD-DL-100 |  |  |  |  | -74.2d | 0d | MH depth 1.5 - 2.5m [3.36]; MH depth 2.5 - 3.5m [2.99]; MH depth > 3.50m; MH depth 2.5 -3.5m [0.37]; Unskilled Labor [112 h]; Plumber [56 h]; Excavator [56 h]; Skilled Labor [56 h] | 65,976.25 | SD | CON | St | CO-R26.S11-SD-190 |
| CO-SD-MH-250 |  | Install RC Wall Rings & Slab Works for Manholes of Storm Drainage Network | 7d | 2026-12-19 | 2026-12-27 | CO-SD-MH-240, CO-SD-MH-200 |  |  |  |  | -74.2d | 0d | MH depth 1.5 - 2.5m [2.01]; MH depth 2.5 - 3.5m [1.79]; MH depth > 3.50m; MH depth 2.5 -3.5m [0.22]; Unskilled Labor [112 h]; Plumber [56 h]; Excavator [56 h]; Mobile Crane [56 h] | 39,585.75 | SD | CON | St | CO-R26.S11-SD-200 |
| CO-SD-MH-260 |  | Backfilling Works for Manholes of Storm Drainage Network | 9d | 2026-12-27 | 2027-01-06 | CO-SD-MH-250, CO-SD-ML-160 FF, CO-SD-MH-220, ENG-SH-DPO-A-120 |  |  |  |  | -74.2d | 15d | MH depth 1.5 - 2.5m [2.69]; MH depth 2.5 - 3.5m [2.39]; MH depth > 3.50m; MH depth 2.5 -3.5m [0.3]; Unskilled Labor [72 h]; Excavator [72 h]; JCB [72 h]; Dump Truck [72 h] | 52,781 | SD | CON | St | CO-R26.S11-SD-220 |

| ID | WBS | Activity | Duration | Start | Finish | Predecessors | Total float | Free float | Resources | Cost | 01- Network | 08 Stage | Displane | Activity ID N |
| --- | --- | --- | --- | --- | --- | --- | --- | --- | --- | --- | --- | --- | --- | --- |
|  | CB | **Catch Basin Sections** |  | 2027-01-13 | 2027-02-15 |  |  |  |  |  |  |  |  |  |
| CO-SD-CB-180 |  | Trench Excavation and Bedding Works for Catch Basins of Storm Drainage Network | 9d | 2027-01-13 | 2027-01-24 | CO-SD-MH-230, CO-SD-CB-140, CO-SD-CB-170 | -89.2d | 0d | Single Catch Basin 1000mm x 1000mm [19.93]; Double Catch Basin 1200mm x 2300mm [0.45]; Unskilled Labor [144 h]; Excavator [144 h]; Skilled Labor [144 h] | 107,190 | SD | CON | St |  |
| CO-SD-CB-190 |  | Installation and Pipes Laying Connection Works for Catch Basins of Storm Drainage Network | 9d | 2027-01-24 | 2027-02-03 | CO-SD-CB-180, CO-SD-CB-150, CO-SD-MH-260, CO-SD-ML-160, CO-SD-CB-170, CO-SD-MH-220, CO-SW-ML-130, CO-SW-MH-200, CO-SW-ML-160, CO-SW-MH-250, ENG-SH-DPO-A-120 | -89.2d | 0d | Single Catch Basin 1000mm x 1000mm [59.78]; Double Catch Basin 1200mm x 2300mm [1.34]; Unskilled Labor [384 h]; Plumber [192 h]; Excavator [192 h]; Skilled Labor [192 h] | 321,570 | SD | CON | St |  |
| CO-SD-CB-200 |  | Trench Backfilling and Compaction Works for Catch Basins of Storm Drainage Network | 9d | 2027-02-03 | 2027-02-15 | CO-SD-CB-190, CO-SD-ML-160 FF, CO-SD-CB-170, CO-SD-MH-260, CO-SD-PO-100-P1 | -89.2d | 0d | Single Catch Basin 1000mm x 1000mm [26.57]; Double Catch Basin 1200mm x 2300mm [0.6]; Unskilled Labor [192 h]; Excavator [192 h]; JCB [192 h]; Dump Truck [192 h] | 142,920 | SD | CON | St |  |
|  | SW | **Sewage Network** |  | 2026-10-25 | 2027-01-03 |  |  |  |  |  |  |  |  |  |
|  | 2 | **FROM MH-18:MH-10** |  | 2026-10-25 | 2026-12-24 |  |  |  |  |  |  |  |  |  |
|  | ML | **Main Line Sections** |  | 2026-10-25 | 2026-12-14 |  |  |  |  |  |  |  |  |  |
| CO-SW-ML-100 |  | Trench Excavation and Bedding Works for Main Lines of Sewage Network | 12d | 2026-10-25 | 2026-11-07 | ENG-SH-SW-ML-A-110, ENG-MT-SW-ML-A-110, PRO-SW-1DL-100, CO-SD-ML-130 SS+3d, CO-EW-220_R, CO-EW-110_R | -72d | 0d | Depth Between 0m to 1.50m [5.97]; Depth Between 1.50m to 2.50m [36.72]; Depth > 2.50m [1.49]; Depth Between 0m to 1.50m [3.28]; Depth Between 1.50m to 2.50m [238.81]; Depth Between 2.50m to 3.50m [11.19]; Depth > 3.50m [2.24]; HDPE Force Main (PE 100, SDR 11, PN 16 bar) DN 160 mm diameter, in trenches depth: 0- 1.5m [3.73]; HDPE Force Main (PE 100, SDR 11, PN 16 bar) DN 160 mm diameter, in trenches depth: 1.51- 2.5m [5.97]; Unskilled Labor [144 h]; Excavator [144 h]; Skilled Labor [144 h] | 62,107.6 | SW | CON | SW |  |
| CO-SW-ML-120 |  | Pipes Laying Works for Main Lines of Sewage Network | 12d | 2026-11-08 | 2026-11-21 | CO-SW-ML-100 | -72d | 0d | Depth Between 0m to 1.50m [10.75]; Depth Between 1.50m to 2.50m [66.09]; Depth > 2.50m [2.69]; Depth Between 0m to 1.50m [5.91]; Depth Between 1.50m to 2.50m [429.85]; Depth Between 2.50m to 3.50m [20.15]; Depth > 3.50m [4.03]; HDPE Force Main (PE 100, SDR 11, PN 16 bar) DN 160 mm diameter, in trenches depth: 0- 1.5m [6.72]; HDPE Force Main (PE 100, SDR 11, PN 16 bar) DN 160 mm diameter, in trenches depth: 1.51- 2.5m [10.75]; Unskilled Labor [288 h]; Plumber [144 h]; Excavator [144 h]; Skilled Labor [144 h] | 111,793.68 | SW | CON | SW |  |
| CO-SW-ML-130 |  | Trench Backfilling and Compaction Works for Main Lines of Sewage Network | 20d | 2026-11-22 | 2026-12-14 | CO-SW-ML-120, ENG-SH-DPO-A-120 | -69d | 3d | Depth Between 0m to 1.50m [4.78]; Depth Between 1.50m to 2.50m [29.37]; Depth > 2.50m [1.19]; Depth Between 0m to 1.50m [2.63]; Depth Between 1.50m to 2.50m [191.04]; Depth Between 2.50m to 3.50m [8.96]; Depth > 3.50m [1.79]; HDPE Force Main (PE 100, SDR 11, PN 16 bar) DN 160 mm diameter, in trenches depth: 0- 1.5m [2.99]; HDPE Force Main (PE 100, SDR 11, PN 16 bar) DN 160 mm diameter, in trenches depth: 1.51- 2.5m [4.78]; Unskilled Labor [160 h]; Excavator [160 h]; JCB [160 h]; Dump Truck [160 h] | 49,686.08 | SW | CON | SW |  |
|  | 1 | **Manholes** |  | 2026-11-22 | 2026-12-24 |  |  |  |  |  |  |  |  |  |
| CO-SW-MH-160 |  | Excavation Works for Main Line Manholes of Sewage Network | 7d | 2026-11-22 | 2026-11-29 | CO-SW-ML-120, ENG-MT-SW-ML-A-100, PRO-SW-1DL-110 | -72d | 0d | Depth: 0 - 1.5m [0.22]; Depth: 1.51 - 2.5m [3.13]; Depth: 2.51 - 3.5m [0.22]; Depth > 3.50m; Unskilled Labor [56 h]; Excavator [56 h]; Skilled Labor [56 h] | 6,572.55 | SW | CON | SW | CO-R26.S11-SW-160 |
| CO-SW-MH-170 |  | Installation RC Footing Works for Main Line Manholes of Sewage Network | 7d | 2026-11-30 | 2026-12-07 | CO-SW-MH-160, CO-SW-ML-120 FF | -71d | 0d | Depth: 0 - 1.5m [0.3]; Depth: 1.51 - 2.5m [4.18]; Depth: 2.51 - 3.5m [0.3]; Depth > 3.50m; Unskilled Labor [128 h]; Plumber [64 h]; Excavator [64 h]; Mobile Crane [64 h] | 8,763.4 | SW | CON | SW | CO-R26.S11-SW-170 |
| CO-SW-MH-180 |  | Install Grp Liner Wall Works for Main Line Manholes of Sewage Network | 7d | 2026-12-08 | 2026-12-15 | CO-SW-MH-170 | -71d | 0d | Depth: 0 - 1.5m [0.3]; Depth: 1.51 - 2.5m [4.18]; Depth: 2.51 - 3.5m [0.3]; Depth > 3.50m; Unskilled Labor [128 h]; Plumber [64 h]; Excavator [64 h]; Mobile Crane [64 h] | 8,763.4 | SW | CON | SW | CO-R26.S11-SW-180 |
| CO-SW-MH-190 |  | Pouring Grp Liner Wall Works for Main Line Manholes of Sewage Network | 4d | 2026-12-16 | 2026-12-20 | CO-SW-MH-180 | -68d | 0d | Depth: 0 - 1.5m [0.07]; Depth: 1.51 - 2.5m [1.04]; Depth: 2.51 - 3.5m [0.07]; Depth > 3.50m; Unskilled Labor [64 h]; Mason [32 h]; Skilled Labor [32 h] | 2,190.85 | SW | CON | SW | CO-R26.S11-SW-190 |
| CO-SW-MH-200 |  | Backfilling Works for Main Line Manholes of Sewage Network | 4d | 2026-12-21 | 2026-12-24 | CO-SW-MH-190, CO-SW-ML-130 FF, CO-SW-ML-130, ENG-SH-DPO-A-120 | -68d | 4d | Depth: 0 - 1.5m [0.3]; Depth: 1.51 - 2.5m [4.18]; Depth: 2.51 - 3.5m [0.3]; Depth > 3.50m; Unskilled Labor [32 h]; Excavator [32 h]; JCB [32 h]; Dump Truck [32 h] | 8,763.4 | SW | CON | SW | CO-R26.S11-SW-200 |
|  | 1 | **FROM MH-10:MH-01** |  | 2026-11-08 | 2027-01-03 |  |  |  |  |  |  |  |  |  |
|  | ML | **Main Line Sections** |  | 2026-11-08 | 2026-12-08 |  |  |  |  |  |  |  |  |  |
| CO-SW-ML-140 |  | Trench Excavation and Bedding Works for Main Lines of Sewage Network | 6d | 2026-11-08 | 2026-11-14 | CO-SW-ML-100, PRO-R25-SW-DL-100 SS | -72d | 0d | Depth Between 0m to 1.50m [8.96]; Depth Between 1.50m to 2.50m [55.07]; Depth > 2.50m [2.24]; Depth Between 0m to 1.50m [4.93]; Depth Between 1.50m to 2.50m [358.21]; Depth Between 2.50m to 3.50m [16.79]; Depth > 3.50m [3.36]; HDPE Force Main (PE 100, SDR 11, PN 16 bar) DN 160 mm diameter, in trenches depth: 0- 1.5m [5.6]; HDPE Force Main (PE 100, SDR 11, PN 16 bar) DN 160 mm diameter, in trenches depth: 1.51- 2.5m [8.96]; Unskilled Labor [96 h]; Excavator [96 h]; Skilled Labor [96 h] | 93,161.4 | SW | CON | SW |  |
| CO-SW-ML-150 |  | Pipes Laying Works for Main Lines of Sewage Network | 7d | 2026-11-15 | 2026-11-22 | CO-SW-ML-140, CO-SW-ML-120 SS, ENG-SH-SPS-A-160 | -72d | 0d | Depth Between 0m to 1.50m [16.12]; Depth Between 1.50m to 2.50m [99.13]; Depth > 2.50m [4.03]; Depth Between 0m to 1.50m [8.87]; Depth Between 1.50m to 2.50m [644.78]; Depth Between 2.50m to 3.50m [30.22]; Depth > 3.50m [6.04]; HDPE Force Main (PE 100, SDR 11, PN 16 bar) DN 160 mm diameter, in trenches depth: 0- 1.5m [10.07]; HDPE Force Main (PE 100, SDR 11, PN 16 bar) DN 160 mm diameter, in trenches depth: 1.51- 2.5m [16.12]; Unskilled Labor [192 h]; Plumber [96 h]; Excavator [96 h]; Skilled Labor [96 h] | 167,690.52 | SW | CON | SW |  |
| CO-SW-ML-160 |  | Trench Backfilling and Compaction Works for Main Lines of Sewage Network | 12d | 2026-11-25 | 2026-12-08 | CO-SW-ML-150, CO-SW-ML-130 SS, CO-UB-PS-100, ENG-SH-DPO-A-120 | -72d | 0d | Depth Between 0m to 1.50m [7.16]; Depth Between 1.50m to 2.50m [44.06]; Depth > 2.50m [1.79]; Depth Between 0m to 1.50m [3.94]; Depth Between 1.50m to 2.50m [286.57]; Depth Between 2.50m to 3.50m [13.43]; Depth > 3.50m [2.69]; HDPE Force Main (PE 100, SDR 11, PN 16 bar) DN 160 mm diameter, in trenches depth: 0- 1.5m [4.48]; HDPE Force Main (PE 100, SDR 11, PN 16 bar) DN 160 mm diameter, in trenches depth: 1.51- 2.5m [7.16]; Unskilled Labor [96 h]; Excavator [96 h]; JCB [96 h]; Dump Truck [96 h] | 74,529.12 | SW | CON | SW |  |
|  | 1 | **Manholes** |  | 2026-11-30 | 2027-01-03 |  |  |  |  |  |  |  |  |  |
| CO-SW-MH-210 |  | Excavation Works for Main Line Manholes of Sewage Network | 8d | 2026-11-30 | 2026-12-08 | CO-SW-ML-150, CO-SW-MH-160, PRO-R25-SW-DL-110 | -72d | 0d | Depth: 0 - 1.5m [0.22]; Depth: 1.51 - 2.5m [4.7]; Depth: 2.51 - 3.5m [0.22]; Depth > 3.50m [0.22]; Unskilled Labor [80 h]; Excavator [80 h]; Skilled Labor [80 h] | 10,823.85 | SW | CON | SW | CO-R26.S11-SW-160 |
| CO-SW-MH-220 |  | Installation RC Footing Works for Main Line Manholes of Sewage Network | 7d | 2026-12-09 | 2026-12-16 | CO-SW-MH-210, CO-SW-MH-170, CO-SW-ML-160 | -72d | 0d | Depth: 0 - 1.5m [0.3]; Depth: 1.51 - 2.5m [6.27]; Depth: 2.51 - 3.5m [0.3]; Depth > 3.50m [0.3]; Unskilled Labor [208 h]; Plumber [104 h]; Excavator [104 h]; Mobile Crane [104 h] | 14,431.8 | SW | CON | SW | CO-R26.S11-SW-170 |
| CO-SW-MH-230 |  | Install Grp Liner Wall Works for Main Line Manholes of Sewage Network | 7d | 2026-12-17 | 2026-12-24 | CO-SW-MH-220, CO-SW-MH-180 | -72d | 0d | Depth: 0 - 1.5m [0.3]; Depth: 1.51 - 2.5m [6.27]; Depth: 2.51 - 3.5m [0.3]; Depth > 3.50m [0.3]; Unskilled Labor [208 h]; Plumber [104 h]; Excavator [104 h]; Mobile Crane [104 h] | 14,431.8 | SW | CON | SW | CO-R26.S11-SW-180 |
| CO-SW-MH-240 |  | Pouring Grp Liner Wall Works for Main Line Manholes of Sewage Network | 4d | 2026-12-26 | 2026-12-29 | CO-SW-MH-230, CO-SW-MH-190 | -72d | 0d | Depth: 0 - 1.5m [0.07]; Depth: 1.51 - 2.5m [1.57]; Depth: 2.51 - 3.5m [0.07]; Depth > 3.50m [0.07]; Unskilled Labor [64 h]; Mason [32 h]; Skilled Labor [32 h] | 3,607.95 | SW | CON | SW | CO-R26.S11-SW-190 |
| CO-SW-MH-250 |  | Backfilling Works for Main Line Manholes of Sewage Network | 4d | 2026-12-30 | 2027-01-03 | CO-SW-MH-240, CO-SW-ML-160, CO-SW-MH-200, ENG-SH-DPO-A-120 | -72d | 0d | Depth: 0 - 1.5m [0.3]; Depth: 1.51 - 2.5m [6.27]; Depth: 2.51 - 3.5m [0.3]; Depth > 3.50m [0.3]; Unskilled Labor [32 h]; Excavator [32 h]; JCB [32 h]; Dump Truck [32 h] | 14,431.8 | SW | CON | SW | CO-R26.S11-SW-200 |

| ID | WBS | Activity | Duration | Start | Finish | Predecessors | Total float | Free float | Resources | Cost | 01- Network | 08 Stage | Displane | Activity ID N |
| --- | --- | --- | --- | --- | --- | --- | --- | --- | --- | --- | --- | --- | --- | --- |
|  | PW | **Potable Water Network** |  | 2027-01-19 | 2027-04-11 |  |  |  |  |  |  |  |  |  |
|  | ML | **Main Line Sections** |  | 2027-01-19 | 2027-02-18 |  |  |  |  |  |  |  |  |  |
| CO-PW-ML-100 |  | Trench Excavation and Bedding Works for Main Lines of Potable Water Network | 8d | 2027-01-19 | 2027-01-28 | ENG-SH-PW-ML-A-110, ENG-MT-PW-ML-A-100, PRO-PW-1DL-100_R, PRO-R25-PW-DL-100_R, CO-SW-ML-130, CO-SW-MH-250, PRO-PW-MF-100_R, CO-SW-MH-250 FF | -85d | 0d | Depth Between 0m to 1.50m [2.24]; Depth Between 1.50m to 2.50m [2.24]; Depth > 2.50m [0.75]; Depth Between 0m to 1.50m [156.72]; Depth Between 1.50m to 2.50m [104.48]; Depth > 2.50m [3.73]; Depth Between 0m to 1.50m [18.66]; Depth Between 1.50m to 2.50m [3.73]; Depth > 2.50m [1.87]; Depth Between 0m to 1.50m [119.4]; Depth Between 1.50m to 2.50m [488.81]; Depth > 2.50m [7.46]; Unskilled Labor [192 h]; Excavator [192 h]; Skilled Labor [192 h] | 145,069 | PW | CON | PT |  |
| CO-PW-ML-110 |  | Pipes Laying and accessories for Main Lines of Potable Water Network | 8d | 2027-01-28 | 2027-02-07 | CO-PW-ML-100 | -85d | 0d | Depth Between 0m to 1.50m [4.03]; Depth Between 1.50m to 2.50m [4.03]; Depth > 2.50m [1.34]; Depth Between 0m to 1.50m [282.09]; Depth Between 1.50m to 2.50m [188.06]; Depth > 2.50m [6.72]; Depth Between 0m to 1.50m [33.58]; Depth Between 1.50m to 2.50m [6.72]; Depth > 2.50m [3.36]; Depth Between 0m to 1.50m [214.93]; Depth Between 1.50m to 2.50m [879.85]; Depth > 2.50m [13.43]; Unskilled Labor [384 h]; Plumber [192 h]; Excavator [192 h]; Skilled Labor [192 h] | 261,124.2 | PW | CON | PT |  |
| CO-PW-ML-130 |  | Trench Backfilling and Compaction Works for Main Lines of Potable Water Network | 8d | 2027-02-07 | 2027-02-18 | CO-PW-ML-110 | -83d | 0d | Depth Between 0m to 1.50m [1.79]; Depth Between 1.50m to 2.50m [1.79]; Depth > 2.50m [0.6]; Depth Between 0m to 1.50m [125.37]; Depth Between 1.50m to 2.50m [83.58]; Depth > 2.50m [2.99]; Depth Between 0m to 1.50m [14.93]; Depth Between 1.50m to 2.50m [2.99]; Depth > 2.50m [1.49]; Depth Between 0m to 1.50m [95.52]; Depth Between 1.50m to 2.50m [391.04]; Depth > 2.50m [5.97]; Unskilled Labor [192 h]; Excavator [192 h]; JCB [192 h]; Dump Truck [192 h] | 116,055.2 | PW | CON | PT |  |
|  | VC | **Valve Chamber** |  | 2027-02-20 | 2027-03-17 |  |  |  |  |  |  |  |  |  |
| CO-PW-VC-170 |  | Excavation Works for Main Line Valves and Valve Chambers of Potable Water Network | 2d | 2027-02-20 | 2027-02-22 | CO-PW-ML-110, ENG-MT-PW-ML-A-110, PRO-PW-1DL-110, CO-PW-ML-130 | -83d | 0d | Wash out chamber (2500x 2500mm) [0.75]; Air valve chamber (1000x 1000 mm) [0.37]; Unskilled Labor [16 h]; Excavator [16 h]; Skilled Labor [16 h] | 15,000 | PW | CON | PT | CO-R26.S11-PW-170 |
| CO-PW-VC180 |  | Installation Works for Valve Chambers of Potable Water Network | 4d | 2027-02-22 | 2027-02-28 | CO-PW-VC-170 | -83d | 0d | Wash out chamber (2500x 2500mm) [1.34]; Air valve chamber (1000x 1000 mm) [0.67]; Unskilled Labor [64 h]; Plumber [32 h]; Excavator [32 h]; Mobile Crane [32 h] | 27,000 | PW | CON | PT | CO-R26.S11-PW-180 |
| CO-PW-VC-190 |  | Installation Works for Valves of Potable Water Network | 7d | 2027-02-28 | 2027-03-14 | CO-PW-VC180, PRO-PW-1DL-110, PRO-R25-PW-DL-110 | -83d | 0d | Gate valves Dia 50 mm [1.49]; Gate valves Dia 100 mm [17.91]; Gate valves Dia 150 mm [25.37]; Gate valves Dia 250 mm [13.43]; Air valves with Dia 50 mm [1.49]; Washout valve Dia 100 mm [2.99]; Flow meter chamber (1500x 2500 mm) [1.49]; Flow meter dia 100 mm [1.49]; Unskilled Labor [112 h]; Plumber [56 h] | 205,440 | PW | CON | PT | CO-R26.S11-PW-190 |
| CO-PW-VC-220 |  | Backfilling Works for Main Line Valves and Valve Chambers of Potable Water Network | 3d | 2027-03-14 | 2027-03-17 | CO-PW-VC-190, CO-PW-ML-130 FF | -83d | 0d | Wash out chamber (2500x 2500mm) [0.6]; Air valve chamber (1000x 1000 mm) [0.3]; Unskilled Labor [24 h]; Excavator [24 h]; JCB [24 h]; Dump Truck [24 h] | 12,000 | PW | CON | PT | CO-R26.S11-PW-220 |
|  | FH | **Fire Hydrant** |  | 2027-03-17 | 2027-04-11 |  |  |  |  |  |  |  |  |  |
| CO-PW-FH-140 |  | Excavation Works for Fire Hydrants of Potable Water Network | 7d | 2027-03-17 | 2027-03-25 | CO-PW-VC-170, ENG-SH-PW-FH-A-110, ENG-MT-PW-FH-A-100, PRO-PW-1DL-120, CO-PW-ML-130, CO-PW-VC180, CO-PW-VC-220, PRO-R25-PW-DL-120 | -83d | 0d | 3-outlet fire hydrant (2 x 2.5 inch and 1 x 4.5 inch) in the form of a separate dry vacuum cylinder, complete according to drawings. [6.34]; Unskilled Labor [56 h]; Excavator [56 h]; Skilled Labor [56 h] | 48,450 | PW | CON | PT |  |
| CO-PW-FH-150 |  | Installation Works for Fire Hydrant of Potable Water Network | 7d | 2027-03-25 | 2027-04-03 | CO-PW-FH-140 | -83d | 0d | 3-outlet fire hydrant (2 x 2.5 inch and 1 x 4.5 inch) in the form of a separate dry vacuum cylinder, complete according to drawings. [11.42]; Unskilled Labor [112 h]; Plumber [56 h]; Excavator [56 h]; Skilled Labor [56 h] | 87,210 | PW | CON | PT |  |
| CO-PW-FH-160 |  | Trench Backfilling and Compaction Works for Fire Hydrants of Potable Water Network | 7d | 2027-04-03 | 2027-04-11 | CO-PW-FH-150, CO-PW-VC-220 FF | -83d | 0d | 3-outlet fire hydrant (2 x 2.5 inch and 1 x 4.5 inch) in the form of a separate dry vacuum cylinder, complete according to drawings. [5.07]; Unskilled Labor [56 h]; Excavator [56 h]; JCB [56 h]; Dump Truck [56 h] | 38,760 | PW | CON | PT |  |
|  | IR | **Irrigation Network** |  | 2027-01-28 | 2027-04-07 |  |  |  |  |  |  |  |  |  |
|  | ML | **Main Line Pipes** |  | 2027-01-28 | 2027-04-07 |  |  |  |  |  |  |  |  |  |
| CO-IR-ML-100 |  | Trench Excavation and Bedding Works for Main Lines of Irrigation Network | 10d | 2027-01-28 | 2027-02-09 | ENG-SH-IR-ML-A-110, ENG-MT-IR-ML-A-100, PRO-IR-1DL-100, PRO-R25-IR-DL-100, CO-PW-ML-100, ENG-SH-HS-S-100 | -78.5d | 0d | pipe line O.D 32 mm PN 10, in depth 0 to 1.5 m [1250]; pipe line O.D 40 mm PN 10, in depth 0 to 1.5 m [690.3]; pipe line O.D 50 mm PN 10, in depth 0 to 1.5 m [93.28]; Unskilled Labor [336 h]; Excavator [336 h]; Skilled Labor [336 h] | 48,300 | IR | CON | irr |  |
| CO-IR-ML-110 |  | Pipes Laying Works for Main Lines of Irrigation Network | 9.5d | 2027-02-10 | 2027-02-24 | CO-IR-ML-100, PRO-IR-1DL-100, CO-PW-ML-110 | -78.5d | 0d | pipe line O.D 32 mm PN 10, in depth 0 to 1.5 m [2250]; pipe line O.D 40 mm PN 10, in depth 0 to 1.5 m [1242.54]; pipe line O.D 50 mm PN 10, in depth 0 to 1.5 m [167.91]; Unskilled Labor [672 h]; Plumber [336 h]; Excavator [336 h]; Skilled Labor [336 h] | 86,940 | IR | CON | irr |  |
| CO-IR-ML-120 |  | Installation Works for Main Line Valves of Irrigation Network | 9d | 2027-02-24 | 2027-03-13 | CO-IR-ML-110, ENG-MT-IR-ML-A-110, PRO-IR-1DL-110, PRO-R25-IR-DL-110 SS, CO-SW-MH-250, CO-PW-ML-130, PRO-R25-IR-DL-110 FF | -78.5d | 0d | Gate valve 50 mm PN16 [10.45]; Direct Burried Gate valve 40 mm PN16 [17.91]; Flushing Bronze gate valve dia 1.5" inside PVC box [28.36]; Air release valve 1.5" inside PVC box [28.36]; Extra flexible pressure compensating on surface inline dripline`s, O.D. is 16.1 mm [17910.5]; Electrical Solenoid Valve ( 1.5") inside PVC box [17.91]; Electrical Solenoid Valve ( 2") inside PVC box [10.45]; Quick coupling valve 1" inside a round valve box 10" size with a manual gate valve, hose swivel and key with all accessories [79.1]; Advanced Irrigation controller subject to client approval, can connect with Centarl Control system [1.49]; Decoder cables 12 AWG between valves and controllers, The cables shall be pulled through 32Ø UPVC conduit [5223.88]; Preparing the irrigation program for the entire system and providing technical services for monitoring and controlling the central irrigation systems [1.49]; Unskilled Labor [192 h]; Plumber [96 h] | 572,640 | IR | CON | irr |  |
| CO-IR-ML-130 |  | Trench Backfilling and Compaction Works for Main Lines of Irrigation Network | 9d | 2027-03-17 | 2027-03-28 | CO-IR-ML-120, CO-PW-FH-140 SS, CO-PW-FH-140 FF | -82d | 0d | pipe line O.D 32 mm PN 10, in depth 0 to 1.5 m [1000]; pipe line O.D 40 mm PN 10, in depth 0 to 1.5 m [552.24]; pipe line O.D 50 mm PN 10, in depth 0 to 1.5 m [74.63]; Unskilled Labor [336 h]; Excavator [336 h]; JCB [336 h]; Dump Truck [336 h] | 38,640 | IR | CON | irr |  |
| CO-IR-ML-140 |  | Installation Works for Bulbblers And Sprinklers of Irrigation Network | 9d | 2027-03-28 | 2027-04-07 | CO-IR-ML-130 | -75d | 0d | Pressure–compensating bubblers 110 Lit/Hr [1268.66]; Unskilled Labor [192 h]; Plumber [96 h] | 14,450 | IR | CON | irr |  |
|  | TSE | **Treated Sewage Effluent (Tse)** |  | 2027-01-28 | 2027-04-07 |  |  |  |  |  |  |  |  |  |
|  | ML | **Main Line Pipes** |  | 2027-01-28 | 2027-04-07 |  |  |  |  |  |  |  |  |  |
| CO-TSE-ML-150 |  | Trench Excavation and Bedding Works for Main Lines of Treated Sewage Effluent (Tse) | 9d | 2027-01-28 | 2027-02-08 | ENG-SH-TSE-ML-A-120, ENG-MT-IR-ML-A-120, PRO-TSE-1DL-120, PRO-R25-TSE-DL-120_R, CO-IR-ML-100 SS, CO-PW-ML-100 | -77d | 1d | Depth Between 0m to 1.50m [3.73]; Depth Between 1.50m to 2.50m [1.87]; Depth > 2.50m [0.75]; Depth Between 0m to 1.50m [343.28]; Depth Between 0m to 1.50m [26.12]; Depth Between 1.50m to 2.50m [16.79]; Depth > 2.50m [3.73]; Depth Between 0m to 1.50m [317.16]; Depth Between 1.50m to 2.50m [97.01]; Depth > 2.50m [9.33]; Depth Between 0m to 1.50m [22.39]; Depth Between 1.50m to 2.50m [14.93]; Depth > 2.50m [2.99]; Unskilled Labor [144 h]; Excavator [144 h]; Skilled Labor [144 h] | 76,734 | TSE | CON | tse |  |
| CO-TSE-ML-160 |  | Pipes Laying Works for Main Lines of Treated Sewage Effluent (Tse) | 9d | 2027-02-10 | 2027-02-23 | CO-TSE-ML-150, PRO-TSE-1DL-120, CO-IR-ML-110 SS | -77d | 0.5d | Depth Between 0m to 1.50m [6.72]; Depth Between 1.50m to 2.50m [3.36]; Depth > 2.50m [1.34]; Depth Between 0m to 1.50m [617.91]; Depth Between 0m to 1.50m [47.01]; Depth Between 1.50m to 2.50m [30.22]; Depth > 2.50m [6.72]; Depth Between 0m to 1.50m [570.9]; Depth Between 1.50m to 2.50m [174.63]; Depth > 2.50m [16.79]; Depth Between 0m to 1.50m [40.3]; Depth Between 1.50m to 2.50m [26.87]; Depth > 2.50m [5.37]; Unskilled Labor [288 h]; Plumber [144 h]; Excavator [144 h]; Skilled Labor [144 h] | 138,121.2 | TSE | CON | tse |  |
| CO-TSE-ML-170 |  | Installation Works for Main Line Valves of Treated Sewage Effluent (Tse) | 8d | 2027-02-24 | 2027-03-08 | CO-TSE-ML-160, ENG-MT-IR-ML-A-130, PRO-TSE-1DL-130, PRO-R25-TSE-DL-130, CO-IR-ML-120 SS | -77.5d | 4.5d | Gate valves dia 50 mm [1.49]; Gate valves dia 100 mm [20.9]; Gate valves dia 150 mm [7.46]; Gate valves dia 200 mm [2.99]; Air valves with dia 50 mm [1.49]; Washout valve dia 100 mm [2.99]; Flow meter dia 150 mm [1.49]; Unskilled Labor [192 h]; Plumber [96 h] | 127,320 | TSE | CON | tse |  |
| CO-TSE-ML-180 |  | Trench Backfilling and Compaction Works for Treated Sewage Effluent (Tse) | 9d | 2027-03-17 | 2027-03-28 | CO-TSE-ML-170, CO-IR-ML-130 SS | -82d | 0d | Depth Between 0m to 1.50m [2.99]; Depth Between 1.50m to 2.50m [1.49]; Depth > 2.50m [0.6]; Depth Between 0m to 1.50m [274.63]; Depth Between 0m to 1.50m [20.9]; Depth Between 1.50m to 2.50m [13.43]; Depth > 2.50m [2.99]; Depth Between 0m to 1.50m [253.73]; Depth Between 1.50m to 2.50m [77.61]; Depth > 2.50m [7.46]; Depth Between 0m to 1.50m [17.91]; Depth Between 1.50m to 2.50m [11.94]; Depth > 2.50m [2.39]; Unskilled Labor [144 h]; Excavator [144 h]; JCB [144 h]; Dump Truck [144 h] | 61,387.2 | TSE | CON | tse |  |
| CO-TSE-ML-190 |  | Installation Works for Valve and Washout Chambers of Treated Sewage Effluent (Tse) | 9d | 2027-03-28 | 2027-04-07 | CO-TSE-ML-180, CO-IR-ML-140 SS | -63d | 12d | Wash out chamber (2500x 2500mm) [2.99]; Air valve chamber (1000x 1000 mm) [5.23]; Flow meter chamber (1500x 3000 mm) [1.49]; Unskilled Labor [192 h]; Plumber [96 h]; Excavator [96 h]; Mobile Crane [96 h] | 126,700 | TSE | CON | tse |  |

| ID | WBS | Activity | Duration | Start | Finish | Predecessors | Total float | Free float | Resources | Cost | 01- Network | 08 Stage | Displane | Activity ID N |
| --- | --- | --- | --- | --- | --- | --- | --- | --- | --- | --- | --- | --- | --- | --- |
|  | MV | **Medium Voltage Network** |  | 2027-02-07 | 2027-04-08 |  |  |  |  |  |  |  |  |  |
|  | CW | **Cabling Works** |  | 2027-02-07 | 2027-04-08 |  |  |  |  |  |  |  |  |  |
| CO-MV-ML-250 |  | Trench Excavation and Bedding Works for Medium Voltage Network | 11d | 2027-02-07 | 2027-02-23 | ENG-SH-MV-A-110, ENG-MT-MV-ML-A-100, PRO-MV-1DL-100, PRO-MV-DL-100, CO-TSE-ML-150 SS, CO-SW-TF-100, CO-SD-ML-130, CO-SD-MH-220, CO-SD-CB-170, CO-SD-ML-160, CO-SD-MH-260, CO-SD-CB-200 SS, CO-SW-ML-130, CO-SW-MH-200, CO-SW-ML-160, CO-SW-MH-250, CO-PW-ML-110 | -85d | 0d | Excavation for Trench size 40cm wide and 80cm deep (for 1 cable) [299.34]; Excavation for Trench Size 60cm wide and 80cm deep (for 2 cables) [149.41]; Excavation for Trench Size 90cm wide and 80cm deep (for 3 cables) [207.94]; Excavation for Trench Size 180cm wide and 80cm deep (for 6 cables) [92.42]; Excavation for Trench Size 210 cm wide and 80cm deep (for 7 cables) [107.82]; Excavation for Trench Size 240cm wide and 80cm deep (for 8 cables) [659.25]; Unskilled Labor [168 h]; Excavator [168 h]; JCB [168 h] | 41,649.44 | MV | CON | MV |  |
| CO-MV-ML-260 |  | Cable Laying Works for Medium Voltage Network | 16d | 2027-02-23 | 2027-03-21 | CO-MV-ML-250 | -85d | 0d | Duct bank for (33) cables [131.64]; Duct bank for (21) cables [208.96]; Duct bank for (15) cables [62.78]; HV Cable Road Crossing [67.02]; Electrical Technician [168 h]; Cable Drum Trailer [168 h]; Boom Truck [168 h]; Pulling Machine [168 h] | 465,372.38 | MV | CON | MV |  |
| CO-MV-ML-270 |  | Trench Backfilling and Compaction Works for Medium Voltage Network | 16d | 2027-03-21 | 2027-04-08 | CO-MV-ML-260 | -85d | 0d | Duct bank for (33) cables [37.61]; Duct bank for (21) cables [59.7]; Duct bank for (15) cables [17.94]; HV Cable Road Crossing [19.15]; Unskilled Labor [168 h]; Excavator [168 h]; JCB [168 h]; Dump Truck [168 h] | 132,963.54 | MV | CON | MV |  |
|  | SL | **Street Lighting Network** |  | 2027-02-08 | 2027-05-06 |  |  |  |  |  |  |  |  |  |
|  | LP | **Lighting Poles Works** |  | 2027-02-08 | 2027-03-30 |  |  |  |  |  |  |  |  |  |
| CO-SL-LP-300 |  | Foundation Excavation Works for Lighting Poles of Street Lighting Network | 8d | 2027-02-08 | 2027-02-20 | ENG-SH-LV-A-120, ENG-SH-SL-A-110, ENG-MT-SL-A-100, PRO-R25-SL-DL-110, CO-MV-ML-250 SS, CO-SD-CB-200 SS+2d, CO-SD-MH-260, CO-SD-ML-160, CO-SW-ML-130, CO-SW-MH-200, CO-SW-ML-160, CO-SW-MH-250 | -82.5d | 0d | Lighting poles with 1 arm, height of (12) meters, including the power distribution box, cables, and RCC foundation. [5.82]; Lighting poles with 2 arms, height of (12) meters, including the power distribution box, cables, and RCC foundation. [5.37]; Unskilled Labor [96 h]; Excavator [96 h]; JCB [96 h]; Dump Truck [96 h] | 29,955 | SL | CON | sL |  |
| CO-SL-LP-310 |  | Installation Works for Lighting Poles Foundation of Street Lighting Network | 8d | 2027-02-20 | 2027-03-03 | CO-SL-LP-300 | -82.5d | 0d | Lighting poles with 1 arm, height of (12) meters, including the power distribution box, cables, and RCC foundation. [11.64]; Lighting poles with 2 arms, height of (12) meters, including the power distribution box, cables, and RCC foundation. [10.75]; Unskilled Labor [96 h]; Boom Truck [96 h]; Skilled Labor [96 h] | 59,910 | SL | CON | sL |  |
| CO-SL-LP-320 |  | Installation Works for Lighting Poles of Street Lighting Network | 9d | 2027-03-04 | 2027-03-18 | CO-SL-LP-310, ENG-MT-SL-A-110, PRO-R25-SL-DL-120 | -82.5d | 0d | Lighting poles with 1 arm, height of (12) meters, including the power distribution box, cables, and RCC foundation. [23.28]; Lighting poles with 2 arms, height of (12) meters, including the power distribution box, cables, and RCC foundation. [21.49]; Electrical Technician [112 h]; Boom Truck [112 h]; Skilled Labor [112 h] | 119,820 | SL | CON | sL |  |
| CO-SL-LP-210 |  | Backfilling Works for Lighting Poles of Street Lighting Network | 10d | 2027-03-20 | 2027-03-30 | CO-SL-LP-320 | -82.5d | 0d | Lighting poles with 1 arm, height of (12) meters, including the power distribution box, cables, and RCC foundation. [5.82]; Lighting poles with 2 arms, height of (12) meters, including the power distribution box, cables, and RCC foundation. [5.37]; Unskilled Labor [96 h]; Excavator [96 h]; JCB [96 h]; Dump Truck [96 h] | 29,955 | SL | CON | sL | CO-R26.S11-SL-210 |
|  | CW | **Cabling Works** |  | 2027-02-20 | 2027-03-28 |  |  |  |  |  |  |  |  |  |
| CO-SL-CL-250 |  | Trench Excavation and Bedding Works for Street Lighting Network | 7d | 2027-02-20 | 2027-03-02 | CO-SL-LP-310 SS, ENG-SH-LV-A-120, ENG-SH-SL-A-110, ENG-MT-SL-ML-A-100, PRO-SL-1DL-100, PRO-R25-SL-DL-100, CO-SL-LP-300 | -79.5d | 0d | Road crossing ducts, 2 ways (2 x 150mm HDPE) [341.33]; Road crossing ducts, 2 ways (2 x 110mm UPVC) [135.6]; Road crossing ducts, 3 ways (3 x 110mm UPVC) [45.06]; Unskilled Labor [240 h]; Excavator [240 h]; JCB [240 h] | 76,889.89 | SL | CON | sL |  |
| CO-SL-CL-260 |  | Cable Laying Works for Street Lighting Network | 7d | 2027-03-02 | 2027-03-15 | CO-SL-CL-250, CO-SL-LP-300 | -79.5d | 3d | 4C-300mm2 CU/XLPE / PVC ARMORED CABLE [83.58]; 4C-240mm2 CU/XLPE / PVC ARMORED CABLE [47.76]; 4C-185mm2 CU/XLPE / PVC ARMORED CABLE [47.76]; 4C-50mm2 CU/XLPE / PVC ARMORED CABLE [179.1]; 4C-16mm2 CU/XLPE / PVC ARMORED CABLE [4161.19]; 4C-16MM2 CU/XLPE / PVC CABLE [1665.67]; 1Cx150sq.mm2,Cu, PVC wire [89.55]; 1Cx120sq.mm2,Cu, PVC wire [89.55]; 1Cx95sq.mm,Cu, PVC wire [47.76]; 1Cx70sq.mm2,Cu, PVC wire [23.88]; 1Cx25sq.mm2,Cu, PVC wire [89.55]; 1Cx16sq.mm2,Cu, PVC wire [4161.19]; 1Cx10sq.mm2,Cu, PVC wire [59.7]; Electrical Technician [240 h]; Cable Drum Trailer [240 h]; Boom Truck [240 h]; Pulling Machine [240 h] | 382,456 | SL | CON | sL |  |
| CO-SL-CL-270 |  | Trench Backfilling and Compaction Works for Street Lighting Network | 8d | 2027-03-20 | 2027-03-28 | CO-SL-CL-260, CO-SL-LP-210 SS | -82.5d | 2.5d | 4C-300mm2 CU/XLPE / PVC ARMORED CABLE [20.9]; 4C-240mm2 CU/XLPE / PVC ARMORED CABLE [11.94]; 4C-185mm2 CU/XLPE / PVC ARMORED CABLE [11.94]; 4C-50mm2 CU/XLPE / PVC ARMORED CABLE [44.78]; 4C-16mm2 CU/XLPE / PVC ARMORED CABLE [1040.3]; 4C-16MM2 CU/XLPE / PVC CABLE [416.42]; 1Cx150sq.mm2,Cu, PVC wire [22.39]; 1Cx120sq.mm2,Cu, PVC wire [22.39]; 1Cx95sq.mm,Cu, PVC wire [11.94]; 1Cx70sq.mm2,Cu, PVC wire [5.97]; 1Cx25sq.mm2,Cu, PVC wire [22.39]; 1Cx16sq.mm2,Cu, PVC wire [1040.3]; 1Cx10sq.mm2,Cu, PVC wire [14.93]; Unskilled Labor [240 h]; Excavator [240 h]; JCB [240 h]; Dump Truck [240 h] | 95,614 | SL | CON | sL |  |
|  | DPB | **Distrubution Panel Boards** |  | 2027-04-08 | 2027-05-06 |  |  |  |  |  |  |  |  |  |
| CO-SL-DB-250 |  | Foundation Excavation Works For Panel Boards of Street Lighting Network | 6d | 2027-04-08 | 2027-04-15 | CO-SL-LP-210, CO-SL-CL-270, ENG-MT-SL-DB-A-100, CO-MV-ML-270, CO-TSE-ML-180 | -83.5d | 0d | Street Lighting panels LCP (01) [0.3]; Unskilled Labor [48 h]; Excavator [48 h]; JCB [48 h]; Dump Truck [48 h] | 4,792.2 | SL | CON | sL |  |
| CO-SL-DB-260 |  | Installation Works for Panel Board Concrete Foundations of Street Lighting Network | 6d | 2027-04-15 | 2027-04-22 | CO-SL-DB-250, PRO-R25-SL-DL-160 | -83.5d | 0d | Street Lighting panels LCP (01) [0.3]; Unskilled Labor [48 h]; Boom Truck [48 h]; Skilled Labor [48 h] | 4,792.2 | SL | CON | sL |  |
| CO-SL-DB-270 |  | Installation Works for Lighting Panel Boards of Street Lighting Network | 6d | 2027-04-22 | 2027-04-29 | CO-SL-DB-260 | -83.5d | 0d | Street Lighting panels LCP (01) [0.6]; Electrical Technician [48 h]; Boom Truck [48 h]; Skilled Labor [48 h] | 9,584.4 | SL | CON | sL |  |
| CO-SL-DB-220 |  | A wall of concrete blocks to install the KWH meter of Street Lighting Network | 6d | 2027-04-29 | 2027-05-06 | CO-SL-DB-270 | -76.5d | 1d | Supply and installation of KWH meter mounting frame including concrete block for installation of KWH meter [8.96]; Unskilled Labor [96 h]; Mason [48 h] | 10,908 | SL | CON | sL | CO-R26.S11-SL-220 |
|  | TE | **Telecom Network** |  | 2027-02-23 | 2027-04-20 |  |  |  |  |  |  |  |  |  |
|  | PD | **Ducts Works** |  | 2027-02-23 | 2027-04-01 |  |  |  |  |  |  |  |  |  |
| CO-TE-DW-100 |  | Trench Excavation and Bedding Works for Ducts of Telecom Network | 4d | 2027-02-23 | 2027-03-01 | ENG-SH-TE-A-110, ENG-MT-TE-A-100, PRO-TE-1DL-100, PRO-R25-TE-DL-100, CO-MV-ML-250 | -84.5d | 0d | 2-ways ducts, 50mm diameter [192.54]; 6-ways ducts, 110mm diameter [776.87]; 9-ways ducts, 6 x 160mm & 2 x 100mm [1139.55]; Unskilled Labor [168 h]; Excavator [168 h]; Skilled Labor [168 h] | 274,681.5 | TE | CON | TL |  |
| CO-TE-DW-110 |  | Pipes Laying Works for Ducts of Telecom Network | 4d | 2027-03-02 | 2027-03-08 | CO-TE-DW-100 | -84.5d | 0d | 2-ways ducts, 50mm diameter [423.58]; 6-ways ducts, 110mm diameter [1709.1]; 9-ways ducts, 6 x 160mm & 2 x 100mm [2507.01]; Unskilled Labor [336 h]; Electrical Technician [168 h]; Excavator [168 h] | 604,299.3 | TE | CON | TL |  |
| CO-TE-DW-130 |  | Trench Backfilling and Compaction Works for Ducts of Telecom Network | 8d | 2027-03-08 | 2027-03-21 | CO-TE-DW-110 | -83.5d | 0d | 2-ways ducts, 50mm diameter [154.03]; 6-ways ducts, 110mm diameter [621.49]; 9-ways ducts, 6 x 160mm & 2 x 100mm [911.64]; Unskilled Labor [168 h]; Excavator [168 h]; JCB [168 h]; Dump Truck [168 h] | 219,745.2 | TE | CON | TL |  |
| CO-TE-DW-120 |  | Pouring Road Crossing Concrete Encasement | 10d | 2027-03-21 | 2027-04-01 | CO-TE-DW-130 | -83.5d | 1d | 6 PVC ducts 150x200 mm (60mm diameter) [241.79]; 6 PVC ducts 600x800 mm (120mm diameter) [420.9]; 6 PVC ducts 800x800 mm (170mm diameter) [600]; Unskilled Labor [112 h]; Mason [56 h] | 179,016 | TE | CON | TL |  |

| ID | WBS | Activity | Duration | Start | Finish | Predecessors | Total float | Free float | Resources | Cost | 01- Network | 08 Stage | Displane | Activity ID N |
| --- | --- | --- | --- | --- | --- | --- | --- | --- | --- | --- | --- | --- | --- | --- |
|  | MH | **Manholes Works** |  | 2027-03-08 | 2027-04-03 |  |  |  |  |  |  |  |  |  |
| CO-TE-MH-140 |  | Excavation Works for Manholes of Telecom Network | 5d | 2027-03-08 | 2027-03-17 | CO-TE-DW-110, ENG-SH-TE-A-110, ENG-MT-TE-A-110, PRO-TE-1DL-110, PRO-R25-TE-DL-110 | -84.5d | 0d | Manhole Type 2 (1600 x 1600 x 2000) [9.33]; Manhole Type 3 (1200 x 1200 x 2000) [11.57]; Unskilled Labor [112 h]; Excavator [112 h]; Skilled Labor [112 h] | 66,699 | TE | CON | TL |  |
| CO-TE-MH-150 |  | Installation Works for Manholes of Telecom Network | 7d | 2027-03-17 | 2027-03-25 | CO-TE-MH-140 | -84.5d | 0d | Manhole Type 2 (1600 x 1600 x 2000) [20.52]; Manhole Type 3 (1200 x 1200 x 2000) [25.45]; Unskilled Labor [224 h]; Plumber [112 h]; Excavator [112 h]; Mobile Crane [112 h] | 146,737.8 | TE | CON | TL |  |
| CO-TE-MH-160 |  | Backfilling Works for Manholes of Telecom Network | 7d | 2027-03-25 | 2027-04-03 | CO-TE-MH-150, CO-TE-DW-120 FF | -84.5d | 0d | Manhole Type 2 (1600 x 1600 x 2000) [7.46]; Manhole Type 3 (1200 x 1200 x 2000) [9.25]; Unskilled Labor [112 h]; Excavator [112 h]; JCB [112 h]; Dump Truck [112 h] | 53,359.2 | TE | CON | TL |  |
|  | DD | **CCTV System Wroks** |  | 2027-04-03 | 2027-04-20 |  |  |  |  |  |  |  |  |  |
| CO-TE-CTV-100 |  | Digging and Pulling Trenches PVC ducts , Backfilling, Excavations, of Power Cable | 5d | 2027-04-03 | 2027-04-08 | CO-TE-MH-160, CO-TE-DW-120, ENG-SH-MSN-A-120, ENG-SH-CTV-A-110, ENG-MT-CTV-A-100, PRO-CTV-1DL-100, PRO-R25-CTV-DL-100, PRO-CTV-LL-MSI-10 FF | -84.5d | 0d | 6 PVC ducts 200x150 mm (60mm diameter) [205.97]; 2-ways ducts, 50mm diameter [743.28]; Unskilled Labor [56 h]; Electrical Technician [112 h]; Excavator [56 h] | 44,838 | TE | CON | TL |  |
| CO-TE-CTV-110 |  | Installation of Network Cable Cat.6A from Network switch to CCTV Camera and ACS Device | 5d | 2027-04-08 | 2027-04-14 | CO-TE-CTV-100 | -84.5d | 0d | NVR Server with RAID (5, 6 or 10) to record all cameras storage 80TB with all hardware / software / licenses etc. [2.99]; VMS Server with RAID (5, 6 or 10) complete Hardware / Software with one Color Laser Printer and all associated [2.99]; Licenses for Cameras, Workstations and Keyboards [1.49]; Work Station (MMI with two monitors each, for Monitoring for CCTV & ACS) [1.49]; Keyboard with joystick for CCTV with all accessories as per specification [1.49]; Pole mounted IP( PoE) Fixed camera, 5MP,IP 66, IR illumination, 3-8mm varifocal, auto iris lens type [65.67]; Wall mounted IP( PoE) Fixed camera, 5MP,IP 66, IR illumination, 3-8mm varifocal, auto iris lens type [116.42]; 5MP Dome camera ceiling Mounted IP (PoE) indoor [25.37]; 5MP PTZ Multi Sensor Camera IP(PoE) 360 Degree View Outdoor with accessories (IP 66) [10.45]; 8 Port Industrial PoE Switch 10/100BaseT (0 deg to +70 deg. Celsius) [17.91]; Filed Equipment cabinet (FEC), with fan and ventilation, NEMEX 4X ,door, minimum size (600x600x400mm) [17.91]; IP Phone Communication server (hot standby) 50 Port equipped, Gateway, Gatekeeper, H.323, SIP, redundant Power etc. [4.48]; IP Phone Voice gateway [1.49]; Voice IP Phone [1.49]; NMS Server for IP phone and NETWORK Elements [1.49]; NMS Workstation [1.49]; Firm Ware, software & licenses [1.49]; Data Cable [1.49]; Power Cable [1.49]; Layer 3, 24 Port non-PoE switch10/1000BaseT/LX (-40 deg to +70 deg. Celsius), stack module and associated [2.99]; Layer 2, 24 Port non-PoE switch10/1000BaseT (-40 deg to +70 deg. Celsiu [8.96]; Network Management System Server [2.99]; Network Management System workstation [1.49]; 42U rack dimension (W x H x L) 800 x 2000 x 1000 mm [2.99]; 12U rack dimension (W x H x L) 600 x 625 x 600 mm [1.49]; 06C Optical Fiber SM [2716.42]; 48C Optical Fiber SM [8656.72]; 48 Core Splice Closure [10.45]; Optical fiber patch cord 5m [35.82]; Data Cable (STP CAT 6A) [15403]; 3C Power Cable armored 1.5mm2 [15403]; 3C Power Cable armored 2.5 mm2 [15403]; UTP CAT6A Patch Cord 1m/3m/5m [34.33]; Unskilled Labor [56 h]; Electrical Technician [112 h] | 3,142,189 | TE | CON | TL |  |
| CO-TE-CTV-130 |  | Installation of Access Control System | 5d | 2027-04-14 | 2027-04-20 | CO-TE-CTV-110 | -84.5d | 0d | Access Control Unit [7.46]; Access Card Reader [7.46]; Magnetic Lock [7.46]; Break Glass [5.97]; Exit Push button [7.46]; Door Sensor [7.46]; Biometrics Reader [11.94]; Unskilled Labor [56 h]; Electrical Technician [112 h] | 43,570 | TE | CON | TL |  |
|  | RD | **Road Works** |  | 2027-03-23 | 2027-05-26 |  |  |  |  |  |  |  |  |  |
|  | 3 | **ST+1000:ST+1531** |  | 2027-03-23 | 2027-04-24 |  |  |  |  |  |  |  |  |  |
|  | RD | **Pre-Bituminous Construction** |  | 2027-03-23 | 2027-04-24 |  |  |  |  |  |  |  |  |  |
| CO-RD-PB-140 |  | Subgrade Layer for Road Works | 13.5d | 2027-03-23 | 2027-04-07 | CO-EW-200_R, CO-EW-110_R, CO-SD-ML-130, CO-SD-MH-220, CO-SD-CB-170, CO-SW-ML-130, CO-SW-MH-200, CO-PW-ML-130, CO-PW-VC-220, CO-IR-ML-130 SS, CO-TSE-ML-180 SS+2d, CO-MV-ML-270 SS+2d, CO-SL-LP-210 SS+1d, CO-SL-CL-270 SS+1d, CO-TE-DW-120 SS, PRO-R25-RD-DL-100, CO-EW-220_R, CO-MV-ML-260, CO-TE-DW-130 | -85d | 0d | Subgrade [2294.03]; Loader [56 h]; Dump Truck [56 h]; Water Tanker [56 h]; Compactor [56 h]; Grader [56 h] | 75,313 | RD | CON |  |  |
| CO-RD-PB-150 |  | Aggregate Base Course Layer for Road Works | 14d | 2027-04-08 | 2027-04-24 | CO-RD-PB-140, PRO-R25-RD-DL-110, CO-TSE-ML-180 | -85d | 0d | Aggregate base course [774.18]; Loader [56 h]; Dump Truck [56 h]; Water Tanker [56 h]; Compactor [56 h]; Grader [56 h] | 52,388.7 | RD | CON |  |  |
|  | 2 | **ST+500:ST+1000** |  | 2027-04-08 | 2027-05-06 |  |  |  |  |  |  |  |  |  |
|  | RD | **Pre-Bituminous Construction** |  | 2027-04-08 | 2027-05-06 |  |  |  |  |  |  |  |  |  |
| CO-RD-PB-120 |  | Subgrade Layer for Road Works | 10.8d | 2027-04-08 | 2027-04-21 | CO-RD-PB-140, CO-SD-ML-160, CO-SD-MH-260, CO-SD-CB-200, CO-SW-ML-160, CO-SW-MH-250, CO-PW-ML-130, CO-PW-VC-220, CO-PW-FH-160 SS+2d, CO-TSE-ML-180 SS+2d, CO-IR-ML-130 SS+2d, CO-MV-ML-270, CO-SL-LP-210, CO-SL-CL-270, CO-TE-DW-120, CO-TE-MH-160, CO-TE-DW-130, CO-TSE-ML-180, CO-SD-PO-100-P1 | -84.3d | 0d | Subgrade [801.49]; Loader [56 h]; Dump Truck [56 h]; Water Tanker [56 h]; Compactor [56 h]; Grader [56 h] | 26,313 | RD | CON |  |  |
| CO-RD-PB-130 |  | Aggregate Base Course Layer for Road Works | 11d | 2027-04-25 | 2027-05-06 | CO-RD-PB-120, CO-RD-PB-150 | -85d | 0d | Aggregate base course [774.18]; Loader [56 h]; Dump Truck [56 h]; Water Tanker [56 h]; Compactor [56 h]; Grader [56 h] | 52,388.7 | RD | CON |  |  |
|  | 1 | **ST+01:ST+500** |  | 2027-04-21 | 2027-05-26 |  |  |  |  |  |  |  |  |  |
|  | RD | **Pre-Bituminous Construction** |  | 2027-04-21 | 2027-05-26 |  |  |  |  |  |  |  |  |  |
| CO-RD-PB-100 |  | Subgrade Layer for Road Works | 12d | 2027-04-21 | 2027-05-05 | CO-RD-PB-120, CO-TE-DW-130, CO-TE-MH-160, CO-SL-CL-270, CO-MV-ML-270, CO-TSE-ML-180, CO-IR-ML-130, CO-PW-FH-160 | -84.3d | 0d | Subgrade [1326.72]; Loader [56 h]; Dump Truck [56 h]; Water Tanker [56 h]; Compactor [56 h]; Grader [56 h] | 43,556.1 | RD | CON |  |  |
| CO-RD-PB-110 |  | Aggregate Base Course Layer for Road Works | 12d | 2027-05-08 | 2027-05-26 | CO-RD-PB-100, CO-RD-PB-130 | -85d | 0d | Aggregate base course [663.58]; Loader [56 h]; Dump Truck [56 h]; Water Tanker [56 h]; Compactor [56 h]; Grader [56 h] | 44,904.6 | RD | CON |  |  |
|  | 3 | **Finishes for Infrastructure Networks** |  | 2027-01-04 | 2027-06-07 |  |  |  |  |  |  |  |  |  |
|  | 11 | **Storm Drainage Network** |  | 2027-02-15 | 2027-05-01 |  |  |  |  |  |  |  |  |  |
|  | TF | **Testing and Finishes** |  | 2027-02-15 | 2027-05-01 |  |  |  |  |  |  |  |  |  |
| CO-SD-ML-TF-100 |  | Testing Work for Pipes of Storm Drainage Network | 10d | 2027-02-15 | 2027-03-02 | CO-SD-ML-130, CO-SD-CB-200, CO-SD-MH-220, CO-SD-CB-170, CO-SD-ML-160, CO-SD-MH-260 | -89.2d | 0d | Depth Between 0m to 1.50m [14.18]; Depth Between 1.50m to 2.50m [420.75]; Depth > 2.50m [2.24]; Depth Between 1.50m to 2.50m [81.79]; Depth Between 2.50m to 3.50m [65.52]; Depth > 3.50m [2.24]; Depth Between 2.50m to 3.50m [28.51]; Depth Between 0m to 1.50m [4.18]; Depth Between 1.50m to 2.50m [1.49]; Depth Between 2.50m to 3.50m [14.03]; Depth > 3.50m [1.04]; Depth Between 2.50m to 3.50m [18.06]; Depth Between 3.50m to 4.50m [55.37]; Depth > 4.50m [2.24]; Depth Between 3.50m to 4.50m [110]; Depth > 4.50m [3.73]; Unskilled Labor [192 h]; Plumber [192 h]; Water Tanker [192 h] | 361,206.6 | SD | CON | St |  |
| CO-SD-CB-TF-130 |  | Catch Basin Internal Finishes (Benching ) for Storm Drainage Network | 10d | 2027-03-02 | 2027-03-20 | CO-SD-CB-170, CO-SD-CB-200, CO-SD-ML-TF-100 | -89.2d | 0d | Single Catch Basin 1000mm x 1000mm [14.7]; Double Catch Basin 1200mm x 2300mm [0.3]; Unskilled Labor [192 h]; Mason [192 h]; JCB [192 h] | 78,870 | SD | CON | St |  |
| CO-SD-CB-TF-160 |  | Testing Works for Catch Basins of Storm Drainage Network | 10d | 2027-03-20 | 2027-03-31 | CO-SD-CB-170, CO-SD-ML-TF-100, CO-SD-CB-TF-130, CO-SD-CB-200, CO-SD-PO-100-P1 | -89.2d | 0d | Single Catch Basin 1000mm x 1000mm [29.4]; Double Catch Basin 1200mm x 2300mm [0.6]; Unskilled Labor [128 h]; Plumber [128 h]; Water Tanker [128 h] | 157,740 | SD | CON | St |  |
| CO-SD-CB-TF-110 |  | Install Catch Basin Cover Works for External Finishes of Storm Drainage Network | 10d | 2027-03-31 | 2027-04-12 | CO-SD-CB-TF-130, PRO-SD-1DL-150, PRO-R25-SD-DL-150 FF, CO-SD-CB-TF-160 | -89.2d | 0d | Single Catch Basin 1000mm x 1000mm [14.7]; Double Catch Basin 1200mm x 2300mm [0.3]; Unskilled Labor [192 h]; Mason [192 h]; JCB [192 h] | 78,870 | SD | CON | St |  |
| CO-SD-MH-TF-120 |  | Main Manhole Internal Finishes (Benching ) for Storm Drainage Network | 10d | 2027-04-12 | 2027-04-24 | CO-SD-MH-220, PRO-SD-1DL-140, CO-SD-CB-200, CO-SD-CB-TF-160, CO-SD-CB-TF-110 | -89.2d | 0d | MH depth 1.5 - 2.5m [4.48]; MH depth 2.5 - 3.5m [3.81]; MH depth > 3.50m [0.22]; MH depth 2.5 -3.5m [0.45]; Unskilled Labor [96 h]; Mason [96 h]; JCB [96 h] | 89,119.8 | SD | CON | St |  |
| CO-SD-MH-TF-210 |  | Testing Works for Manholes of Storm Drainage Network | 6d | 2027-04-24 | 2027-05-01 | CO-SD-MH-220, CO-SD-ML-TF-100, CO-SD-MH-TF-120, PRO-R25-SD-DL-140, CO-SD-CB-TF-110, CO-SD-MH-260, CO-SD-PO-100-P1 | -89.2d | 0d | MH depth 1.5 - 2.5m [2.99]; MH depth 2.5 - 3.5m [2.54]; MH depth > 3.50m [0.15]; MH depth 2.5 -3.5m [0.3]; Unskilled Labor [24 h]; Plumber [24 h]; Water Tanker [24 h] | 59,413.2 | SD | CON | St | CO-R26.S11-SD-210 |

| ID | WBS | Activity | Duration | Start | Finish | Predecessors | Total float | Free float | Resources | Cost | 01- Network | 08 Stage | Displane | Activity ID N |
| --- | --- | --- | --- | --- | --- | --- | --- | --- | --- | --- | --- | --- | --- | --- |
|  | 10 | **Sewage Network** |  | 2027-01-04 | 2027-04-21 |  |  |  |  |  |  |  |  |  |
|  | TF | **Testing and Finishes** |  | 2027-01-04 | 2027-04-21 |  |  |  |  |  |  |  |  |  |
| CO-SW-TF-100 |  | Final Testing For Main Line of Sewage Network | 9d | 2027-01-04 | 2027-01-13 | CO-SW-ML-130, CO-SW-MH-250, CO-SW-MH-200, CO-SW-ML-160 | -64.5d | 0d | Depth Between 0m to 1.50m [5.97]; Depth Between 1.50m to 2.50m [36.72]; Depth > 2.50m [1.49]; Depth Between 0m to 1.50m [3.28]; Depth Between 1.50m to 2.50m [238.81]; Depth Between 2.50m to 3.50m [11.19]; Depth > 3.50m [2.24]; HDPE Force Main (PE 100, SDR 11, PN 16 bar) DN 160 mm diameter, in trenches depth: 0- 1.5m [3.73]; HDPE Force Main (PE 100, SDR 11, PN 16 bar) DN 160 mm diameter, in trenches depth: 1.51- 2.5m [5.97]; Unskilled Labor [96 h]; Plumber [96 h]; Water Tanker [96 h] | 62,107.6 | SW | CON | SW |  |
| CO-SW-TF-130 |  | Main Manhole Internal Finishes (Benching + Insulation) of Sewage Network | 21d | 2027-01-14 | 2027-02-07 | CO-SW-MH-200, CO-SW-TF-100, CO-SW-MH-250, CO-SD-PO-100-P1 | -33d | 39.5d | Depth: 0 - 1.5m [0.15]; Depth: 1.51 - 2.5m [2.61]; Depth: 2.51 - 3.5m [0.15]; Depth > 3.50m [0.07]; Unskilled Labor [128 h]; Mason [128 h]; JCB [128 h] | 5,798.8 | SW | CON | SW |  |
| CO-SW-TF-110 |  | Install Manhole Cover Works for External Finishes of Sewage Network | 10d | 2027-04-05 | 2027-04-17 | CO-SW-TF-130, PRO-SW-1DL-120, PRO-R25-SW-DL-120 | -72.5d | 0d | Depth: 0 - 1.5m [0.15]; Depth: 1.51 - 2.5m [2.61]; Depth: 2.51 - 3.5m [0.15]; Depth > 3.50m [0.07]; Unskilled Labor [128 h]; Mason [128 h]; JCB [128 h] | 5,798.8 | SW | CON | SW |  |
| CO-SW-TF-210 |  | Testing Works for Main Line Manholes of Sewage Network | 4d | 2027-04-17 | 2027-04-21 | CO-SW-TF-130, CO-SW-TF-110 | -72.5d | 0d | Depth: 0 - 1.5m [0.3]; Depth: 1.51 - 2.5m [5.22]; Depth: 2.51 - 3.5m [0.3]; Depth > 3.50m [0.15]; Unskilled Labor [64 h]; Plumber [64 h]; Water Tanker [64 h] | 11,597.6 | SW | CON | SW | CO-R26.S11-SW-210 |
|  | 9 | **Potable Water Network** |  | 2027-04-11 | 2027-05-22 |  |  |  |  |  |  |  |  |  |
|  | TF | **Testing and Finishes** |  | 2027-04-11 | 2027-05-22 |  |  |  |  |  |  |  |  |  |
| CO-PW-TF-110 |  | Testing Work for Main Line of Potable Water Network | 10.5d | 2027-04-11 | 2027-04-22 | CO-PW-ML-130, CO-PW-FH-160, CO-PW-VC180, CO-PW-FH-160 FF | -83d | 0d | Depth Between 0m to 1.50m [0.9]; Depth Between 1.50m to 2.50m [0.9]; Depth > 2.50m [0.3]; Depth Between 0m to 1.50m [62.69]; Depth Between 1.50m to 2.50m [41.79]; Depth > 2.50m [1.49]; Depth Between 0m to 1.50m [7.46]; Depth Between 1.50m to 2.50m [1.49]; Depth > 2.50m [0.75]; Depth Between 0m to 1.50m [47.76]; Depth Between 1.50m to 2.50m [195.52]; Depth > 2.50m [2.99]; Unskilled Labor [160 h]; Plumber [160 h]; Water Tanker [160 h] | 58,027.6 | PW | CON | PT |  |
| CO-PW-TF-120 |  | Fire Hydrant Finishies (S.Box + Safety + Marker Post ) of Potable Water Network | 10d | 2027-04-24 | 2027-05-04 | CO-PW-FH-160, ENG-MT-PW-TF-A-100, CO-PW-TF-110 | -83d | 0d | 3-outlet fire hydrant (2 x 2.5 inch and 1 x 4.5 inch) in the form of a separate dry vacuum cylinder, complete according to drawings. [2.54]; Unskilled Labor [80 h]; Plumber [80 h] | 19,380 | PW | CON | PT |  |
| CO-PW-TF-100 |  | Final Finishes works and Covers for Valves and Valve Chambers of Potable Water Network | 10d | 2027-05-05 | 2027-05-22 | CO-PW-VC-220, ENG-MT-PW-TF-A-100, PRO-PW-1DL-130, PRO-R25-PW-DL-130, CO-PW-TF-110, CO-PW-TF-120 | -83d | 0d | Wash out chamber (2500x 2500mm) [0.3]; Air valve chamber (1000x 1000 mm) [0.15]; Unskilled Labor [80 h]; Mason [80 h]; JCB [80 h] | 6,000 | PW | CON | PT |  |
|  | 13 | **Irrigation Network** |  | 2027-04-07 | 2027-04-21 |  |  |  |  |  |  |  |  |  |
|  | TF | **Testing and Finishes** |  | 2027-04-07 | 2027-04-21 |  |  |  |  |  |  |  |  |  |
| CO-IR-TF-160 |  | Final Testing (pressure tests) of Irrigation Network | 12d | 2027-04-07 | 2027-04-21 | CO-IR-ML-140, CO-IR-ML-130 | -75d | 0d | pipe line O.D 32 mm PN 10, in depth 0 to 1.5 m [500]; pipe line O.D 40 mm PN 10, in depth 0 to 1.5 m [276.12]; pipe line O.D 50 mm PN 10, in depth 0 to 1.5 m [37.31]; Unskilled Labor [256 h]; Plumber [256 h]; Water Tanker [256 h] | 19,320 | IR | CON | irr |  |
|  | 1 | **Treated Sewage Effluent (Tse)** |  | 2027-04-21 | 2027-05-04 |  |  |  |  |  |  |  |  |  |
|  | TF | **Testing and Finishes** |  | 2027-04-21 | 2027-05-04 |  |  |  |  |  |  |  |  |  |
| CO-TSE-TF-170 |  | Final Testing (pressure tests) of Treated Sewage Effluent (Tse) | 11.5d | 2027-04-21 | 2027-05-04 | CO-TSE-ML-190, CO-IR-TF-160, CO-TSE-ML-180 | -75d | 0d | Depth Between 0m to 1.50m [1.49]; Depth Between 1.50m to 2.50m [0.75]; Depth > 2.50m [0.3]; Depth Between 0m to 1.50m [137.31]; Depth Between 0m to 1.50m [10.45]; Depth Between 1.50m to 2.50m [6.72]; Depth > 2.50m [1.49]; Depth Between 0m to 1.50m [126.87]; Depth Between 1.50m to 2.50m [38.81]; Depth > 2.50m [3.73]; Depth Between 0m to 1.50m [8.96]; Depth Between 1.50m to 2.50m [5.97]; Depth > 2.50m [1.19]; Unskilled Labor [128 h]; Plumber [128 h]; Water Tanker [128 h] | 30,693.6 | TSE | CON | tse |  |
|  | 14 | **Medium Voltage Network** |  | 2027-04-08 | 2027-04-29 |  |  |  |  |  |  |  |  |  |
|  | TT | **Termination and Testing Works** |  | 2027-04-08 | 2027-04-29 |  |  |  |  |  |  |  |  |  |
| CO-MV-TF-220 |  | Termination Works of Medium Voltage Network | 18d | 2027-04-08 | 2027-04-29 | CO-MV-ML-270, ENG-MT-MV-TF-A-100, PRO-MV-DL-110 | -81.5d | 0d | Duct bank for (33) cables [18.81]; Duct bank for (21) cables [29.85]; Duct bank for (15) cables [8.97]; HV Cable Road Crossing [9.57]; Unskilled Labor [144 h]; Electrical Technician [288 h] | 66,481.77 | MV | CON | MV |  |
|  | 12 | **Street Lighting Network** |  | 2027-04-29 | 2027-05-22 |  |  |  |  |  |  |  |  |  |
|  | TR | **Termination and Testing Works** |  | 2027-04-29 | 2027-05-22 |  |  |  |  |  |  |  |  |  |
| CO-SL-LP-330 |  | Installation Works for Lighting Fixtures With Drop Wire of Street Lighting Network | 7d | 2027-04-29 | 2027-05-08 | CO-SL-DB-270, CO-SL-LP-210, ENG-MT-SL-A-120, PRO-R25-SL-DL-140 | -83.5d | 0d | Street Lighting( LED) Luminaire of Output ? 20,965 lumen complete with control gear and lamp, (129.1) WATT. [165.67]; Unskilled Labor [72 h]; Electrical Technician [144 h] | 65,934 | SL | CON | sL |  |
| CO-SL-TF-200 |  | Testing Works for Lighting Poles of Street Lighting Network | 5d | 2027-05-08 | 2027-05-13 | CO-SL-DB-270, CO-SL-LP-330, CO-SL-ES-230, PRO-R25-SL-DL-130 | -75.5d | 7.5d | Lighting poles with 1 arm, height of (12) meters, including the power distribution box, cables, and RCC foundation. [5.82]; Lighting poles with 2 arms, height of (12) meters, including the power distribution box, cables, and RCC foundation. [5.37]; Unskilled Labor [80 h]; Electrical Technician [160 h] | 29,955 | SL | CON | sL | CO-R26.S11-SL-200 |
| CO-SL-TF-220 |  | Termination Works For Lighting Poles Cables of Street Lighting Network | 7d | 2027-05-08 | 2027-05-22 | CO-SL-DB-270, CO-SL-LP-330, CO-SL-ES-230 | -77.5d | 0d | Lighting poles with 1 arm, height of (12) meters, including the power distribution box, cables, and RCC foundation. [5.82]; Lighting poles with 2 arms, height of (12) meters, including the power distribution box, cables, and RCC foundation. [5.37]; Unskilled Labor [64 h]; Electrical Technician [128 h] | 29,955 | SL | CON | sL |  |
| CO-SL-TF-230 |  | Termination Works For Panel Board Cables of Street Lighting Network | 7d | 2027-05-08 | 2027-05-22 | CO-SL-DB-270, CO-SL-LP-330, CO-SL-ES-230, PRO-R25-SL-DL-170, CO-SL-DB-220, PRO-SPS-LL-MSI-10 | -77.5d | 0d | Street Lighting panels LCP (01) [0.15]; Unskilled Labor [64 h]; Electrical Technician [128 h] | 2,396.1 | SL | CON | sL |  |
| CO-SL-TF-380 |  | Testing Works For Panel Board Cables of Street Lighting Network | 2d | 2027-05-08 | 2027-05-10 | CO-SL-DB-270, CO-SL-LP-330, CO-SL-ES-230 | -72.5d | 10.5d | Street Lighting panels LCP (01) [0.15]; Unskilled Labor [48 h]; Electrical Technician [96 h] | 2,396.1 | SL | CON | sL | CO-R25-SL-TF-380 |

| ID | WBS | Activity | Duration | Start | Finish | Predecessors | Total float | Free float | Resources | Cost | 01- Network | 08 Stage | Displane |
| --- | --- | --- | --- | --- | --- | --- | --- | --- | --- | --- | --- | --- | --- |
|  | ES | **Earthing System Works** |  | 2027-04-29 | 2027-05-08 |  |  |  |  |  |  |  |  |
| CO-SL-ES-220 |  | Install Earthing System Works for Lighting Poles of Street Lighting Network | 7d | 2027-04-29 | 2027-05-08 | CO-SL-LP-330 SS, ENG-MT-SL-ES-A-100, PRO-R25-SL-DL-150 | -83.5d | 0d | Including earthing of lighting poles, masts, feeder pillars, unit substations and LV feeders. [78.36]; Unskilled Labor [96 h]; Electrical Technician [192 h] | 9,135 | SL | CON | sL |
| CO-SL-ES-230 |  | Install Earthing System Works for Lighting Panel Boards of Street Lighting Network | 7d | 2027-04-29 | 2027-05-08 | CO-SL-ES-220 SS | -83.5d | 0d | Including earthing of lighting poles, masts, feeder pillars, unit substations and LV feeders. [33.58]; Unskilled Labor [96 h]; Electrical Technician [192 h] | 3,915 | SL | CON | sL |
|  | 3 | **Telecom Network** |  | 2027-04-20 | 2027-05-09 |  |  |  |  |  |  |  |  |
|  | 1 | **Testing and Finishes** |  | 2027-04-20 | 2027-05-09 |  |  |  |  |  |  |  |  |
| CO-TE-CTV-TF-110 |  | Smart Card Printer | 4d | 2027-04-20 | 2027-04-25 | CO-TE-CTV-130 | -84.5d | 0d | Smart Card Printer [1.49]; Unskilled Labor [32 h]; Electrical Technician [64 h] | 9,324 | TE | CON | TL |
| CO-TE-CTV-TF-120 |  | Card Issue Work Station | 4d | 2027-04-25 | 2027-04-29 | CO-TE-CTV-TF-110 | -84.5d | 0d | Card Issue Work Station [1.49]; Unskilled Labor [32 h]; Electrical Technician [64 h] | 14,918 | TE | CON | TL |
| CO-TE-CTV-TF-130 |  | Photographic Camera with stand | 4d | 2027-04-29 | 2027-05-04 | CO-TE-CTV-TF-120 | -84.5d | 0d | Photographic Camera with stand [1.49]; Unskilled Labor [32 h]; Electrical Technician [64 h] | 11,189 | TE | CON | TL |
| CO-TE-CTV-TF-140 |  | Interface modules with CCTV, Fire and other systems | 4d | 2027-05-04 | 2027-05-09 | CO-TE-CTV-TF-130, PRO-LS-LL-MSI-20, PRO-TSE-LL-MSI-30 | -84.5d | 0d | Interface modules with CCTV, Fire and other systems [1.49]; Unskilled Labor [32 h]; Electrical Technician [64 h] | 47,363 | TE | CON | TL |
|  | 2 | **Road Works** |  | 2027-04-08 | 2027-06-07 |  |  |  |  |  |  |  |  |
|  | 3 | **ST+1000:ST+1531** |  | 2027-04-08 | 2027-06-01 |  |  |  |  |  |  |  |  |
|  | 1 | **Bituminous Construction** |  | 2027-04-25 | 2027-05-10 |  |  |  |  |  |  |  |  |
| CO-RD-B-150 |  | Application of Prime Coat Layer for Road Works | 7d | 2027-04-25 | 2027-05-02 | CO-RD-PV-160, PRO-R25-RD-DL-160, CO-RD-PB-150 | -84d | 0d | Bituminous base course (Grading I - Class A), including Prime Coat (MC1) [258.06]; Unskilled Labor [16 h]; MC1 Sprinkler [16 h]; Skilled Labor [16 h] | 105,814.8 | RD | CON |  |
| CO-RD-B-160 |  | Bituminous Base Courses Layers for Road Works- | 7d | 2027-05-03 | 2027-05-10 | CO-RD-B-150, PRO-R25-RD-DL-170, CO-RD-PV-160 | -84d | 0d | Bituminous concrete wearing course, (Grading I - Class A), including tack coat (RC2) [258.06]; Bob Cat [24 h]; Dump Truck [24 h]; Compactor [24 h]; Asphalt Paver [24 h] | 106,852.2 | RD | CON |  |
|  | LS | **Pavement Works** |  | 2027-04-08 | 2027-05-05 |  |  |  |  |  |  |  |  |
| CO-RD-PV-160 |  | Fixing of Curbstone for Sidewalks Pavement | 12.2d | 2027-04-08 | 2027-04-22 | CO-RD-PB-140, PRO-R25-RD-DL-130 | -84.2d | 0d | Precast Concrete Curbstone 150X300X900 Type (K1-A) [3796.19]; Precast Concrete Curbstone 100X200X500 Type (K4) [2945.22]; Precast Concrete Curbstone 150X300X500 Type (K1-B) [1154.48]; Precast Concrete Curbstone Type (K1-C) [51.72]; Flush Kerb Type (D) [98.21]; Unskilled Labor [160 h]; Mason [160 h]; JCB [160 h]; Compactor [160 h]; Forklift [160 h] | 258,753.6 | RD | CON |  |
| CO-RD-PV-170 |  | Fixing of Interlock Tiles for Sidewalks Pavement | 11d | 2027-04-22 | 2027-05-05 | CO-RD-PV-160, PRO-R25-RD-DL-120 | -84.2d | 0d | 60mm thick [14588.2]; 80mm thick [20371.5]; Unskilled Labor [160 h]; Mason [160 h]; JCB [160 h]; Compactor [160 h]; Forklift [160 h] | 1,846,192.69 | RD | CON |  |
|  | TS | **Traffic Signs Boards and Roads Marking** |  | 2027-05-11 | 2027-06-01 |  |  |  |  |  |  |  |  |
| CO-RD-F-RM-180 |  | Application of Road Marking Works For Road Works | 7d | 2027-05-11 | 2027-05-24 | CO-RD-B-160, CO-RD-PV-170, PRO-R25-RD-DL-150 | -81d | 0d | Retroreflective Thermoplastic White Traffic lines [504.1]; Retroreflective Thermoplastic Yellow, Traffic lines [754.85]; Road Marking Machine [32 h] | 35,427 | RD | CON |  |
| CO-RD-F-TS-120 |  | Installation Works of Traffic Signs Boards For Road Works | 7d | 2027-05-25 | 2027-06-01 | CO-RD-F-RM-180, PRO-R25-RD-DL-140 | -81d | 4d | Traffic signs, ground mounted, Sheet Aluminum, (breakaway) Single post IPE, with all accessories [51.72]; Precast Concrete Blister Warning Tactile Paver Brown Finish 300*300*60mm [33.43]; Unskilled Labor [64 h]; Skilled Labor [64 h] | 37,296 | RD | CON |  |
|  | 1 | **ST+500:ST+1000** |  | 2027-04-22 | 2027-06-06 |  |  |  |  |  |  |  |  |
|  | 1 | **Bituminous Construction** |  | 2027-05-11 | 2027-05-25 |  |  |  |  |  |  |  |  |
| CO-RD-B-130 |  | Application of Prime Coat Layer for Road Works | 4d | 2027-05-11 | 2027-05-20 | CO-RD-PV-140, CO-RD-PB-130, CO-RD-B-150, CO-RD-B-160 | -84d | 0d | Bituminous base course (Grading I - Class A), including Prime Coat (MC1) [258.06]; Unskilled Labor [16 h]; MC1 Sprinkler [16 h]; Skilled Labor [16 h] | 105,814.8 | RD | CON |  |
| CO-RD-B-140 |  | Bituminous Base Courses Layers for Road Works- | 4d | 2027-05-22 | 2027-05-25 | CO-RD-B-130 | -84d | 1d | Bituminous concrete wearing course, (Grading I - Class A), including tack coat (RC2) [258.06]; Bob Cat [32 h]; Dump Truck [32 h]; Compactor [32 h]; Asphalt Paver [32 h] | 106,852.2 | RD | CON |  |

| ID | WBS | Activity | Duration | Start | Finish | Predecessors | Complete | Planned start | Planned finish | Total float | Free float | Resources | Cost | Actual cost | 01- Network | 08 Stage | Displane | 13 BUILDINGS |
| --- | --- | --- | --- | --- | --- | --- | --- | --- | --- | --- | --- | --- | --- | --- | --- | --- | --- | --- |
|  | LS | **Pavement Works** |  | 2027-04-22 | 2027-05-24 |  |  |  |  |  |  |  |  |  |  |  |  |  |
| CO-RD-PV-140 |  | Fixing of Curbstone for Sidewalks Pavement | 11d | 2027-04-22 | 2027-05-05 | CO-RD-PB-120, CO-RD-PV-160 |  |  |  | -84.2d | 0d | Precast Concrete Curbstone 150X300X900 Type (K1-A) [3796.19]; Precast Concrete Curbstone 100X200X500 Type (K4) [2945.22]; Precast Concrete Curbstone 150X300X500 Type (K1-B) [1154.48]; Precast Concrete Curbstone Type (K1-C) [51.72]; Flush Kerb Type (D) [98.21]; Unskilled Labor [176 h]; Mason [176 h]; JCB [176 h]; Compactor [176 h]; Forklift [176 h] | 258,753.6 |  | RD | CON |  |  |
| CO-RD-PV-150 |  | Fixing of Interlock Tiles for Sidewalks Pavement | 11d | 2027-05-05 | 2027-05-24 | CO-RD-PV-140, CO-RD-PV-170 |  |  |  | -84.2d | 0.1d | 60mm thick [14588.2]; 80mm thick [20371.5]; Unskilled Labor [176 h]; Mason [176 h]; JCB [176 h]; Compactor [176 h]; Forklift [176 h] | 1,846,192.69 |  | RD | CON |  |  |
|  | TS | **Traffic Signs Boards and Roads Marking** |  | 2027-05-27 | 2027-06-06 |  |  |  |  |  |  |  |  |  |  |  |  |  |
| CO-RD-F-RM-170 |  | Application of Road Marking Works For Road Works | 5d | 2027-05-27 | 2027-06-01 | CO-RD-B-140, CO-RD-PV-150, CO-RD-PB-110, CO-RD-PB-130 |  |  |  | -85d | 0d | Retroreflective Thermoplastic White Traffic lines [504.1]; Retroreflective Thermoplastic Yellow, Traffic lines [754.85]; Road Marking Machine [64 h] | 35,427 |  | RD | CON |  |  |
| CO-RD-F-TS-110 |  | Installation Works of Traffic Signs Boards For Road Works | 4d | 2027-06-02 | 2027-06-06 | CO-RD-F-RM-170 |  |  |  | -85d | 0d | Traffic signs, ground mounted, Sheet Aluminum, (breakaway) Single post IPE, with all accessories [51.72]; Precast Concrete Blister Warning Tactile Paver Brown Finish 300*300*60mm [33.43]; Unskilled Labor [64 h]; Skilled Labor [64 h] | 37,296 |  | RD | CON |  |  |
|  | 2 | **ST+01:ST+500** |  | 2027-05-05 | 2027-06-07 |  |  |  |  |  |  |  |  |  |  |  |  |  |
|  | 1 | **Bituminous Construction** |  | 2027-05-27 | 2027-06-06 |  |  |  |  |  |  |  |  |  |  |  |  |  |
| CO-RD-B-110 |  | Application of Prime Coat Layer for Road Works | 5d | 2027-05-27 | 2027-06-01 | CO-RD-PV-120, CO-RD-PB-110, CO-RD-B-130 |  |  |  | -85d | 0d | Bituminous base course (Grading I - Class A), including Prime Coat (MC1) [221.19]; Unskilled Labor [16 h]; MC1 Sprinkler [16 h]; Skilled Labor [16 h] | 90,698.4 |  | RD | CON |  |  |
| CO-RD-B-120 |  | Bituminous Base Courses Layers for Road Works- | 4d | 2027-06-02 | 2027-06-06 | CO-RD-B-110 |  |  |  | -85d | 0d | Bituminous concrete wearing course, (Grading I - Class A), including tack coat (RC2) [221.19]; Bob Cat [24 h]; Dump Truck [24 h]; Compactor [24 h]; Asphalt Paver [24 h] | 91,587.6 |  | RD | CON |  |  |
|  | LS | **Pavement Works** |  | 2027-05-05 | 2027-06-06 |  |  |  |  |  |  |  |  |  |  |  |  |  |
| CO-RD-PV-120 |  | Fixing of Curbstone for Sidewalks Pavement | 11d | 2027-05-05 | 2027-05-24 | CO-RD-PB-100, CO-RD-PB-100 FF, CO-RD-PV-140 |  |  |  | -84.3d | 0d | Precast Concrete Curbstone 150X300X900 Type (K1-A) [3253.88]; Precast Concrete Curbstone 100X200X500 Type (K4) [2524.48]; Precast Concrete Curbstone 150X300X500 Type (K1-B) [989.55]; Precast Concrete Curbstone Type (K1-C) [44.33]; Flush Kerb Type (D) [84.18]; Unskilled Labor [160 h]; Mason [160 h]; JCB [160 h]; Compactor [160 h]; Forklift [160 h] | 221,788.8 |  | RD | CON |  |  |
| CO-RD-PV-130 |  | Fixing of Interlock Tiles for Sidewalks Pavement | 11d | 2027-05-24 | 2027-06-06 | CO-RD-PV-120, CO-RD-PV-150 |  |  |  | -84.3d | 0.7d | 60mm thick [12504.2]; 80mm thick [17461.3]; Unskilled Labor [160 h]; Mason [160 h]; JCB [160 h]; Compactor [160 h]; Forklift [160 h] | 1,582,450.87 |  | RD | CON |  |  |
|  | TS | **Traffic Signs Boards and Roads Marking** |  | 2027-06-07 | 2027-06-07 |  |  |  |  |  |  |  |  |  |  |  |  |  |
| CO-RD-F-RM-160 |  | Application of Road Marking Works For Road Works | 1d | 2027-06-07 | 2027-06-07 | CO-RD-B-120, CO-RD-PV-130 |  |  |  | -82d | 0d | Retroreflective Thermoplastic White Traffic lines [432.09]; Retroreflective Thermoplastic Yellow, Traffic lines [647.01]; Road Marking Machine [48 h] | 30,366 |  | RD | CON |  |  |
| CO-RD-F-TS-100 |  | Installation Works of Traffic Signs Boards For Road Works | 1d | 2027-06-07 | 2027-06-07 | CO-RD-F-RM-160 SS |  |  |  | -82d | 0d | Traffic signs, ground mounted, Sheet Aluminum, (breakaway) Single post IPE, with all accessories [44.33]; Precast Concrete Blister Warning Tactile Paver Brown Finish 300*300*60mm [28.66]; Unskilled Labor [48 h]; Skilled Labor [48 h] | 31,968 |  | RD | CON |  |  |
|  | GEN | **Superstructure Work** |  | 2026-07-28 | 2027-05-20 |  |  |  |  |  |  |  |  |  |  |  |  |  |
|  | 4 | **Utility Buildings** |  | 2026-08-01 | 2027-05-20 |  |  |  |  |  |  |  |  |  |  |  |  |  |
|  | 6 | **Storm Drainage Ponds** |  | 2026-08-02 | 2026-09-01 |  |  |  |  |  |  |  |  |  |  |  |  |  |
| CO-SD-PO-100-P1 |  | Excavation & Filling Works - PART 1 | 15d | 2026-08-02 A | 2026-09-01 A | ENG-SH-DPO-A-120, ENG-MT-DPO-CV-A-110, PRO-DPO-CV-1DL-10, PRO-DPO-CV-DL-10 FF, CO-SD-ML-130 SS | 100% | 2026-10-22 | 2026-11-08 |  |  | Unskilled Labor [336 h]; Excavator [168 h]; Skilled Labor [168 h] |  |  |  | CON |  |  |
| CO-SD-PO-100-P2 |  | Excavation & Filling Works - PART 2 | 16d | 2026-08-02 A | 2026-09-01 A | CO-SD-PO-100-P1, CO-SD-PO-110-P1 | 100% | 2026-11-28 | 2026-12-15 |  |  | Unskilled Labor [336 h]; Excavator [168 h] |  |  |  | CON |  |  |
| CO-SD-PO-110-P1 |  | Finished Grouted Riprap - PART 1 | 16d | 2026-08-02 A | 2026-09-01 A | CO-SD-PO-100-P1 | 100% | 2026-11-09 | 2026-11-26 |  |  | Finished grouted riprap for Pond 300mm as per drawings [3053.73]; Unskilled Labor [336 h]; Mason [336 h] | 245,520 | 245,520 | SD | CON | St |  |
| CO-SD-PO-110-P2 |  | Finished Grouted Riprap - PART 2 | 16d | 2026-08-02 A | 2026-09-01 A | CO-SD-PO-100-P2, CO-SD-PO-110-P1 | 100% | 2026-12-16 | 2027-01-03 |  |  | Finished grouted riprap for Pond 300mm as per drawings [2498.51]; Unskilled Labor [336 h]; Mason [336 h] | 200,880 | 200,880 | SD | CON | St |  |
|  | 4 | **Pump Station** |  | 2026-08-01 | 2027-05-20 |  |  |  |  |  |  |  |  |  |  |  |  |  |
|  | 1 | **Civil work** |  | 2026-08-01 | 2026-12-05 |  |  |  |  |  |  |  |  |  |  |  |  |  |
|  | 1 | **Sup Structure** |  | 2026-08-01 | 2026-09-01 |  |  |  |  |  |  |  |  |  |  |  |  |  |
| CO-UB-PS-100 |  | Excavation Work for for Pump station building | 8d | 2026-08-01 A | 2026-08-08 A | ENG-SH-SPS-A-160, PRO-SPS-CV-DL-10 SS | 100% | 2026-08-30 | 2026-09-08 |  |  | Price; Unskilled Labor [160 h]; Excavator [80 h]; Skilled Labor [80 h] |  |  | UB | CON |  | PUMP |
| CO-UB-PS-110 |  | pouring P.C Conceret for Pump station building | 3d | 2026-08-02 A | 2026-09-01 A | CO-UB-PS-100 | 100% | 2026-09-08 | 2026-09-12 |  |  | Price [72069.1 SAR]; Unskilled Labor [24 h]; Mason [24 h] | 48,286.32 |  | UB | CON |  |  |
| CO-UB-PS-120 |  | Formwork for Foundation for Pump station building | 9d | 2026-08-02 A | 2026-09-01 A | CO-UB-PS-110 | 100% | 2026-09-12 | 2026-09-22 |  |  | Price [72069.1 SAR]; Unskilled Labor [56 h]; Carpenter [112 h] | 72,069.14 | 72,069.14 | UB | CON |  |  |
| CO-UB-PS-130 |  | Steel fixing for Foundation for Pump station building | 9d | 2026-08-02 A | 2026-09-01 A | CO-UB-PS-120 | 100% | 2026-09-22 | 2026-10-04 |  |  | Price [72069.1 SAR]; Unskilled Labor [40 h]; Steel Fixer [120 h] | 72,069.14 | 72,069.14 | UB | CON |  |  |
| CO-UB-PS-140 |  | pouring for Foundation for Pump station building | 1d | 2026-08-02 A | 2026-09-01 A | CO-UB-PS-130 | 100% | 2026-10-04 | 2026-10-05 |  |  | Price [72069.1 SAR]; Unskilled Labor [8 h]; Mason [8 h] | 72,069.14 | 72,069.14 | UB | CON |  |  |
| CO-UB-PS-150 |  | curing and deshuttering formwork Pump station building | 3d | 2026-08-02 A | 2026-09-01 A | CO-UB-PS-140 | 100% | 2026-10-05 | 2026-10-08 |  |  | Price [72069.1 SAR]; Unskilled Labor [72 h]; Carpenter [48 h] | 72,069.14 | 72,069.14 | UB | CON |  |  |
| CO-UB-PS-160 |  | Backfilling and compaction work for pump station | 7d | 2026-08-02 A | 2026-09-01 A | CO-UB-PS-150 | 100% | 2026-10-08 | 2026-10-17 |  |  | Price [72069.1 SAR]; Unskilled Labor [80 h]; Excavator [40 h]; Skilled Labor [40 h] | 72,069.14 | 72,069.14 | UB | CON |  |  |

| ID | WBS | Activity | Duration | Start | Finish | Predecessors | Complete | Remaining | Planned start | Planned finish | Total float | Free float | Resources | Cost | Actual cost | 01- Network | 08 Stage |
| --- | --- | --- | --- | --- | --- | --- | --- | --- | --- | --- | --- | --- | --- | --- | --- | --- | --- |
|  | 2 | **Super structure** |  | 2026-09-16 | 2026-12-05 |  |  |  |  |  |  |  |  |  |  |  |  |
| CO-UB-PS-170 |  | Formwork for Wall and columns for Pump station building | 9.21d | 2026-09-16 A | 2026-09-21 A | CO-UB-PS-160 | 100% |  | 2026-11-05 | 2026-11-16 |  |  | Price [72069.1 SAR]; Unskilled Labor [96 h]; Carpenter [192 h] | 72,069.14 | 72,069.14 | UB | CON |
| CO-UB-PS-180 |  | Steel fixing for Wall columns | 7d | 2026-09-16 A | 2026-09-21 A | CO-UB-PS-170 | 100% |  | 2026-11-16 | 2026-11-24 |  |  | Price [72069.1 SAR]; Unskilled Labor [56 h]; Steel Fixer [168 h] | 72,069.14 | 72,069.14 | UB | CON |
| CO-UB-PS-190 |  | pouring for Wall columns | 1d | 2026-09-21 A | 2026-09-21 A | CO-UB-PS-180 | 100% |  | 2026-12-01 | 2026-12-02 |  |  | Price [72069.1 SAR]; Unskilled Labor [8 h]; Mason [8 h] | 72,069.14 | 72,069.14 | UB | CON |
| CO-UB-PS-200 |  | curing and deshuttering formwork for Wall columns | 2d | 2026-09-23 A | 2026-09-23 A | CO-UB-PS-190 | 100% |  | 2026-11-12 | 2026-11-14 |  |  | Price [72069.1 SAR]; Unskilled Labor [48 h]; Carpenter [32 h] | 72,069.14 | 72,069.14 | UB | CON |
| CO-UB-PS-210 |  | Waterproofing for Walls columns | 4.75d | 2026-09-24 A | 2026-09-24 A | CO-UB-PS-200 | 100% |  | 2026-11-15 | 2026-11-19 |  |  | Price [72069.1 SAR]; Unskilled Labor [40 h]; Mason [40 h] | 72,069.14 | 72,069.14 | UB | CON |
| CO-UB-PS-220 |  | Formwork for pump roof | 6d | 2026-09-24 A | 2026-10-03 A | CO-UB-PS-210 | 100% |  | 2026-11-19 | 2026-11-26 |  |  | Price [72069.1 SAR]; Unskilled Labor [96 h]; Carpenter [192 h] | 72,069.14 | 72,069.14 | UB | CON |
| CO-UB-PS-230 |  | Steel fixing for pump roof | 6d | 2026-09-26 A | 2026-12-01 | CO-UB-PS-220 | 90% | 6d | 2026-11-26 | 2026-12-03 | -2d | 0d | Price [72069.1 SAR]; Unskilled Labor [80 h]; Steel Fixer [240 h] | 72,069.14 |  | UB | CON |
| CO-UB-PS-240 |  | pouring for pump roof | 1d | 2026-12-02 | 2026-12-02 | CO-UB-PS-230 |  |  |  |  | -2d | 0d | Price [72069.1 SAR]; Unskilled Labor [8 h]; Mason [8 h] | 72,069.14 |  | UB | CON |
| CO-UB-PS-250 |  | curing and deshuttering formwork for pump roof | 2d | 2026-12-03 | 2026-12-05 | CO-UB-PS-240 |  |  |  |  | -2d | 0d | Price [72069.1 SAR]; Unskilled Labor [48 h]; Carpenter [32 h] | 72,069.14 |  | UB | CON |
|  | 2 | **Architectural work** |  | 2026-12-06 | 2027-01-14 |  |  |  |  |  |  |  |  |  |  |  |  |
| CO-UB-PS-260 |  | Executing Masonry Works for Pump station building | 5d | 2026-12-06 | 2026-12-10 | CO-UB-PS-250 |  |  |  |  | -2d | 0d | Price [183776 SAR]; Unskilled Labor [192 h]; Mason [192 h] | 183,776.32 |  | UB | CON |
| CO-UB-PS-270 |  | Executing Plastering Works for Pump station building | 5d | 2026-12-12 | 2026-12-16 | CO-UB-PS-260 |  |  |  |  | -2d | 0d | Price [229720 SAR]; Unskilled Labor [112 h]; Mason [112 h] | 229,720.4 |  | UB | CON |
| CO-UB-PS-280 |  | Executing Painting Works for Pump station building | 5d | 2026-12-17 | 2026-12-22 | CO-UB-PS-270 |  |  |  |  | -2d | 0d | Price [227221 SAR]; Unskilled Labor [224 h]; Skilled Labor [224 h] | 227,220.6 |  | UB | CON |
| CO-UB-PS-320 |  | Doors and windows Fixing &Stair Tiles | 7d | 2027-01-07 | 2027-01-14 | CO-UB-PS-280, CO-UB-PS-310 |  |  |  |  | 2d | 3d | Price [229720 SAR]; Unskilled Labor [56 h]; Carpenter [112 h] | 229,720.4 |  | UB | CON |
|  | 3 | **Electrical work** |  | 2026-12-23 | 2027-05-09 |  |  |  |  |  |  |  |  |  |  |  |  |
| CO-UB-PS-290 |  | Lighting system for pump house | 5d | 2026-12-23 | 2026-12-28 | CO-UB-PS-280 |  |  |  |  | -2d | 0d | Price [135130 SAR]; Unskilled Labor [96 h]; Electrical Technician [192 h] | 135,129.65 |  | UB | CON |
| CO-UB-PS-300 |  | Wiring connection for pump house | 5d | 2026-12-29 | 2027-01-03 | CO-UB-PS-290 |  |  |  |  | -2d | 0d | Price [54051.9 SAR]; Unskilled Labor [72 h]; Electrical Technician [144 h] | 54,051.87 |  | UB | CON |
| CO-UB-PS-310 |  | Sockets and switches for pump house | 3d | 2027-01-04 | 2027-01-06 | CO-UB-PS-300 |  |  |  |  | -2d | 0d | Price [81077.8 SAR]; Unskilled Labor [56 h]; Electrical Technician [112 h] | 81,077.78 |  | UB | CON |
| CO-UB-PS-330 |  | Installation for Distribution boards for pump house | 8d | 2027-01-07 | 2027-01-16 | CO-UB-PS-310 |  |  |  |  | -2d | 79.5d | Price [135130 SAR]; Unskilled Labor [96 h]; Electrical Technician [192 h] | 135,129.65 |  | UB | CON |
| CO-UB-PS-370 |  | Executing Earthing and bonding for the entire system | 8d | 2027-04-29 | 2027-05-09 | CO-UB-PS-330, CO-MV-TF-220 |  |  |  |  | -81.5d | 0d | Price [135130 SAR]; Unskilled Labor [104 h]; Electrical Technician [208 h] | 135,129.65 |  | UB | CON |
|  | 4 | **Mechanical work** |  | 2027-01-07 | 2027-05-20 |  |  |  |  |  |  |  |  |  |  |  |  |
| CO-UB-PS-340 |  | Executing HVAC System for Pump station building | 14d | 2027-01-07 | 2027-01-23 | CO-UB-PS-270, CO-UB-PS-310 |  |  |  |  | 0d | 81.5d | Price [162156 SAR]; Unskilled Labor [112 h]; Electrical Technician [224 h] | 162,155.58 |  | UB | CON |
| CO-UB-PS-350 |  | Executing Fire Alarm System for Pump station building | 5d | 2027-01-07 | 2027-01-12 | CO-UB-PS-270, CO-UB-PS-310 |  |  |  |  | -1d | 0d | Price [324311 SAR]; Unskilled Labor [72 h]; Electrical Technician [144 h] | 324,311.15 |  | UB | CON |
| CO-UB-PS-360 |  | Executing Fire fighting institution works(piping and wire installation) for Pump station building | 5d | 2027-01-13 | 2027-01-18 | CO-UB-PS-350 |  |  |  |  | -1d | 0d | Price [405389 SAR]; Unskilled Labor [72 h]; Electrical Technician [144 h] | 405,388.95 |  | UB | CON |
| CO-UB-PS-380 |  | Executing Fire fighting finishing works for Pump station building | 5d | 2027-01-19 | 2027-01-24 | CO-UB-PS-360, CO-UB-PS-320 |  |  |  |  | -1d | 80.5d | Price [162156 SAR]; Unskilled Labor [72 h]; Electrical Technician [144 h] | 162,155.58 |  | UB | CON |
| CO-UB-PS-390 |  | Installation of pumps | 5d | 2027-05-09 | 2027-05-20 | CO-UB-PS-380, CO-UB-PS-370, CO-UB-PS-340 |  |  |  |  | -81.5d | 1.5d | Price [567545 SAR]; Unskilled Labor [112 h]; Electrical Technician [224 h] | 567,544.52 |  | UB | CON |

| ID | WBS | Activity | Duration | Start | Finish | Predecessors | Complete | Remaining | Planned start | Planned finish | Total float | Free float | Resources | Cost | Actual cost | 01- Network | 08 Stage | 13 BUILDINGS |
| --- | --- | --- | --- | --- | --- | --- | --- | --- | --- | --- | --- | --- | --- | --- | --- | --- | --- | --- |
|  | 3 | **Lift Station** |  | 2026-09-01 | 2027-02-16 |  |  |  |  |  |  |  |  |  |  |  |  |  |
|  | 1 | **Civil work** |  | 2026-09-01 | 2026-12-21 |  |  |  |  |  |  |  |  |  |  |  |  |  |
|  | 1 | **Sup Structure** |  | 2026-09-01 | 2026-09-30 |  |  |  |  |  |  |  |  |  |  |  |  |  |
| CO-UB-LS-220 |  | Excavation Work for for Lift Station | 6d | 2026-09-01 A | 2026-09-08 A | CO-UB-PS-100, ENG-SH-LS-A-170 | 100% |  |  |  |  |  | Price; Unskilled Labor [144 h]; Excavator [72 h]; Skilled Labor [72 h] |  |  | UB | CON | PUMP |
| CO-UB-LS-230 |  | pouring P.C Conceret for Lift Station | 5d | 2026-09-08 A | 2026-09-12 A | CO-UB-LS-220, PRO-FE-CV-MF-60 | 100% |  | 2026-11-08 | 2026-11-12 |  |  | Price [42040.3 SAR]; Unskilled Labor [40 h]; Mason [40 h] | 42,040.33 | 42,040.33 | UB | CON |  |
| CO-UB-LS-240 |  | Formwork for Foundation for Lift Station | 5d | 2026-09-15 A | 2026-09-20 A | CO-UB-LS-230 | 100% |  | 2026-11-05 | 2026-11-10 |  |  | Price [58856.5 SAR]; Unskilled Labor [56 h]; Carpenter [112 h] | 58,856.47 | 58,856.47 | UB | CON |  |
| CO-UB-LS-250 |  | Steel fixing for Foundation for Lift Station | 6d | 2026-09-21 A | 2026-09-24 A | CO-UB-LS-240 | 100% |  | 2026-11-24 | 2026-11-30 |  |  | Price [42040.3 SAR]; Unskilled Labor [64 h]; Steel Fixer [192 h] | 42,040.33 | 42,040.33 | UB | CON |  |
| CO-UB-LS-260 |  | pouring for Foundation for Lift Station | 1d | 2026-09-26 A | 2026-09-26 A | CO-UB-LS-250 | 100% |  | 2026-12-01 | 2026-12-01 |  |  | Price [50448.4 SAR]; Unskilled Labor [8 h]; Mason [8 h] | 50,448.4 | 50,448.4 | UB | CON |  |
| CO-UB-LS-270 |  | curing and deshuttering formwork Lift Station | 2d | 2026-09-27 A | 2026-09-27 A | CO-UB-LS-260 | 100% |  | 2026-12-02 | 2026-12-03 |  |  | Price [8408.07 SAR]; Unskilled Labor [48 h]; Carpenter [32 h] | 8,408.07 | 8,408.07 | UB | CON |  |
| CO-UB-LS-280 |  | Backfilling and compaction work for pump station | 4d | 2026-09-28 A | 2026-09-30 A | CO-UB-LS-270 | 100% |  | 2026-12-05 | 2026-12-08 |  |  | Price [84080.7 SAR]; Unskilled Labor [96 h]; Excavator [48 h]; Skilled Labor [48 h] | 84,080.67 | 84,080.67 | UB | CON |  |
|  | 2 | **Super structure** |  | 2026-09-23 | 2026-12-21 |  |  |  |  |  |  |  |  |  |  |  |  |  |
| CO-UB-LS-290 |  | Formwork for Wall and columns for Lift Station | 7d | 2026-09-23 A | 2026-11-25 | CO-UB-LS-280 FF | 70% | 7d | 2026-12-03 | 2026-12-10 | -14d | 0d | Price [84080.7 SAR]; Unskilled Labor [168 h]; Carpenter [112 h] | 84,080.67 |  | UB | CON |  |
| CO-UB-LS-300 |  | Steel fixing for Wall columns | 9d | 2026-09-23 A | 2026-11-26 | CO-UB-LS-290 FF, CO-UB-LS-290 SS | 70% | 9d | 2026-12-12 | 2026-12-21 | -14d | 0d | Price [84080.7 SAR]; Unskilled Labor [72 h]; Steel Fixer [216 h] | 84,080.67 |  | UB | CON |  |
| CO-UB-LS-310 |  | pouring for Wall columns | 1d | 2026-09-30 A | 2026-11-26 | CO-UB-LS-300 FF, CO-UB-LS-300 SS | 50% | 1d | 2026-12-28 | 2026-12-28 | -14d | 0d | Price [50448.4 SAR]; Unskilled Labor [8 h]; Mason [8 h] | 50,448.4 |  | UB | CON |  |
| CO-UB-LS-320 |  | curing and deshuttering formwork for Wall columns | 2d | 2026-11-28 | 2026-11-29 | CO-UB-LS-310, PRO-LS-CV-DL-50 |  |  |  |  | -14d | 0d | Price [8408.07 SAR]; Unskilled Labor [48 h]; Carpenter [32 h] | 8,408.07 |  | UB | CON |  |
| CO-UB-LS-330 |  | Waterproofing for Walls columns | 4d | 2026-11-30 | 2026-12-03 | CO-UB-LS-320 |  |  |  |  | -14d | 0d | Price [84080.7 SAR]; Unskilled Labor [32 h]; Mason [32 h] | 84,080.67 |  | UB | CON |  |
| CO-UB-LS-340 |  | Formwork for pump roof | 5d | 2026-12-05 | 2026-12-09 | CO-UB-LS-330 |  |  |  |  | -14d | 0d | Price [84080.7 SAR]; Unskilled Labor [120 h]; Carpenter [80 h] | 84,080.67 |  | UB | CON |  |
| CO-UB-LS-350 |  | Steel fixing for pump roof | 6d | 2026-12-10 | 2026-12-16 | CO-UB-LS-340 |  |  |  |  | -14d | 0d | Price [84080.7 SAR]; Unskilled Labor [48 h]; Steel Fixer [144 h] | 84,080.67 |  | UB | CON |  |
| CO-UB-LS-360 |  | pouring for pump roof | 1d | 2026-12-17 | 2026-12-17 | CO-UB-LS-350 |  |  |  |  | -14d | 0d | Price [67264.5 SAR]; Unskilled Labor [8 h]; Mason [8 h] | 67,264.53 |  | UB | CON |  |
| CO-UB-LS-370 |  | curing and deshuttering formwork for pump roof | 3d | 2026-12-19 | 2026-12-21 | CO-UB-LS-360 |  |  |  |  | -14d | 0d | Price [8408.07 SAR]; Unskilled Labor [72 h]; Carpenter [48 h] | 8,408.07 |  | UB | CON |  |
|  | 2 | **Architectural work** |  | 2026-12-22 | 2027-01-07 |  |  |  |  |  |  |  |  |  |  |  |  |  |
| CO-UB-LS-380 |  | Executing Masonry Works for Pump station building | 7d | 2026-12-22 | 2026-12-29 | CO-UB-LS-370 |  |  |  |  | -14d | 0d | Price [357343 SAR]; Unskilled Labor [192 h]; Mason [192 h] | 357,342.85 |  | UB | CON |  |
| CO-UB-LS-390 |  | Executing Plastering Works for Pump station building | 8d | 2026-12-30 | 2027-01-07 | CO-UB-LS-380 |  |  |  |  | -14d | 0d | Price [357343 SAR]; Unskilled Labor [112 h]; Mason [112 h] | 357,342.85 |  | UB | CON |  |
|  | 3 | **Electrical work** |  | 2027-01-09 | 2027-02-16 |  |  |  |  |  |  |  |  |  |  |  |  |  |
| CO-UB-LS-400 |  | Lighting system for pump house | 8d | 2027-01-09 | 2027-01-17 | CO-UB-LS-390 |  |  |  |  | -14d | 0d | Price [147141 SAR]; Unskilled Labor [88 h]; Electrical Technician [176 h] | 147,141.18 |  | UB | CON |  |
| CO-UB-LS-420 |  | Wiring connection for pump house | 6d | 2027-01-18 | 2027-01-24 | CO-UB-LS-400 |  |  |  |  | -14d | 0d | Price [84080.7 SAR]; Unskilled Labor [72 h]; Electrical Technician [144 h] | 84,080.67 |  | UB | CON |  |
| CO-UB-LS-440 |  | Sockets and switches for pump house | 6d | 2027-01-25 | 2027-01-31 | CO-UB-LS-420 |  |  |  |  | -14d | 0d | Price [42040.3 SAR]; Unskilled Labor [64 h]; Electrical Technician [128 h] | 42,040.33 |  | UB | CON |  |
| CO-UB-LS-460 |  | Installation for Distribution boards for pump house | 6d | 2027-02-01 | 2027-02-07 | CO-UB-LS-440 |  |  |  |  | -14d | 0d | Price [105101 SAR]; Unskilled Labor [72 h]; Electrical Technician [144 h] | 105,100.84 |  | UB | CON |  |
| CO-UB-LS-480 |  | Executing Earthing and bonding for the entire system | 6d | 2027-02-08 | 2027-02-16 | CO-UB-LS-460 |  |  |  |  | -14d | 69d | Price [42040.3 SAR]; Unskilled Labor [64 h]; Electrical Technician [128 h] | 42,040.33 |  | UB | CON |  |

| ID | WBS | Activity | Duration | Start | Finish | Predecessors | Total float | Free float | Resources | Cost | 01- Network | 08 Stage | Displane |
| --- | --- | --- | --- | --- | --- | --- | --- | --- | --- | --- | --- | --- | --- |
|  | 4 | **Mechanical work** |  | 2027-01-09 | 2027-02-14 |  |  |  |  |  |  |  |  |
| CO-UB-LS-410 |  | Internal pipe installation | 8d | 2027-01-09 | 2027-01-17 | CO-UB-LS-390 | -12d | 0d | Price [210202 SAR]; Unskilled Labor [64 h]; Plumber [64 h] | 210,201.68 | UB | CON |  |
| CO-UB-LS-430 |  | Guide rails & lifting chains installation | 7d | 2027-01-18 | 2027-01-25 | CO-UB-LS-410 | -12d | 0d | Price [168161 SAR]; Unskilled Labor [56 h]; Plumber [56 h] | 168,161.34 | UB | CON |  |
| CO-UB-LS-450 |  | ExeValve installation | 7d | 2027-01-26 | 2027-02-02 | CO-UB-LS-430 | -12d | 0d | Price [210202 SAR]; Unskilled Labor [72 h]; Plumber [72 h] | 210,201.68 | UB | CON |  |
| CO-UB-LS-470 |  | Installation of pumps | 8d | 2027-02-03 | 2027-02-14 | CO-UB-LS-450 | -12d | 71d | Price [252242 SAR]; Unskilled Labor [64 h]; Plumber [64 h] | 252,242.01 | UB | CON |  |
|  | 5 | **Potable Water Tank** |  | 2026-12-07 | 2027-02-25 |  |  |  |  |  |  |  |  |
|  | 1 | **Eearth Work** |  | 2026-12-07 | 2026-12-20 |  |  |  |  |  |  |  |  |
| CO-UB-PWT-100 |  | Excavation work for tank foundation tank formation level | 7d | 2026-12-07 | 2026-12-14 | ENG-SH-ST-A-180, PRO-TSE-CV-1DL-50, PRO-TSE-CV-DL-60 | -76d | 0d | Glass Fused Bolted (GLS) 1500 m3 Tank with associated accessories & manufacturer recommendation for the foundation; Unskilled Labor [112 h]; Excavator [56 h]; Skilled Labor [56 h] |  | PW | CON | PT |
| CO-UB-PWT-110 |  | Soil replacement Up to tank formation level | 5d | 2026-12-15 | 2026-12-20 | CO-UB-PWT-100 | -76d | 0d | Glass Fused Bolted (GLS) 1500 m3 Tank with associated accessories & manufacturer recommendation for the foundation [0.02]; Unskilled Labor [80 h]; Excavator [40 h]; Compactor [40 h] | 7,353.58 | PW | CON | PT |
|  | 2 | **Structural Work** |  | 2026-12-21 | 2027-01-06 |  |  |  |  |  |  |  |  |
| CO-UB-PWT-120 |  | Plain Concrete works | 3d | 2026-12-21 | 2026-12-23 | CO-UB-PWT-110 | -76d | 0d | Glass Fused Bolted (GLS) 1500 m3 Tank with associated accessories & manufacturer recommendation for the foundation [0.06]; Unskilled Labor [24 h]; Mason [24 h] | 24,787.37 | PW | CON | PT |
| CO-UB-PWT-130 |  | Form work for Tank Foundation | 5d | 2026-12-24 | 2026-12-29 | CO-UB-PWT-120 | -76d | 0d | Glass Fused Bolted (GLS) 1500 m3 Tank with associated accessories & manufacturer recommendation for the foundation [0.1]; Unskilled Labor [144 h]; Carpenter [96 h] | 41,312.28 | PW | CON | PT |
| CO-UB-PWT-140 |  | Steel Reinforcement work for Tank Foundation | 6d | 2026-12-30 | 2027-01-05 | CO-UB-PWT-130 | -76d | 0d | Glass Fused Bolted (GLS) 1500 m3 Tank with associated accessories & manufacturer recommendation for the foundation [0.09]; Unskilled Labor [56 h]; Steel Fixer [168 h] | 38,558.13 | PW | CON | PT |
| CO-UB-PWT-150 |  | Casting concrete for Tank Foundation | 1d | 2027-01-06 | 2027-01-06 | CO-UB-PWT-140 | -76d | 0d | Glass Fused Bolted (GLS) 1500 m3 Tank with associated accessories & manufacturer recommendation for the foundation [0.03]; Unskilled Labor [8 h]; Mason [8 h] | 13,770.76 | PW | CON | PT |
|  | 3 | **Tank Shell Erection&Roof Installation** |  | 2027-01-07 | 2027-02-01 |  |  |  |  |  |  |  |  |
| CO-UB-PWT-160 |  | Bottom ring installation | 6d | 2027-01-07 | 2027-01-13 | CO-UB-PWT-150 | -76d | 0d | Glass Fused Bolted (GLS) 1500 m3 Tank with associated accessories & manufacturer recommendation for the foundation [0.2]; Unskilled Labor [80 h]; Skilled Labor [160 h] | 82,624.57 | PW | CON | PT |
| CO-UB-PWT-170 |  | shell erection | 8d | 2027-01-14 | 2027-01-23 | CO-UB-PWT-160 | -76d | 0d | Glass Fused Bolted (GLS) 1500 m3 Tank with associated accessories & manufacturer recommendation for the foundation [0.27]; Unskilled Labor [112 h]; Skilled Labor [224 h] | 110,166.09 | PW | CON | PT |
| CO-UB-PWT-180 |  | Aluminum dome / steel roof installation | 8d | 2027-01-24 | 2027-02-01 | CO-UB-PWT-170 | -76d | 0d | Glass Fused Bolted (GLS) 1500 m3 Tank with associated accessories & manufacturer recommendation for the foundation [0.33]; Unskilled Labor [112 h]; Skilled Labor [224 h] | 137,707.61 | PW | CON | PT |
|  | 4 | **Mechanical Work&Accessories** |  | 2027-02-02 | 2027-02-25 |  |  |  |  |  |  |  |  |
| CO-UB-PWT-190 |  | Inlet / outlet piping connections | 6d | 2027-02-02 | 2027-02-09 | CO-UB-PWT-180 | -76d | 0d | Glass Fused Bolted (GLS) 1500 m3 Tank with associated accessories & manufacturer recommendation for the foundation [0.2]; Unskilled Labor [48 h]; Plumber [48 h] | 81,697.34 | PW | CON | PT |
| CO-UB-PWT-200 |  | installation Valves | 6d | 2027-02-09 | 2027-02-18 | CO-UB-PWT-190 | -76d | 0d | Glass Fused Bolted (GLS) 1500 m3 Tank with associated accessories & manufacturer recommendation for the foundation [0.13]; Unskilled Labor [48 h]; Plumber [48 h] | 55,083.05 | PW | CON | PT |
| CO-UB-PWT-210 |  | Ladders, platforms & handrails | 5d | 2027-02-18 | 2027-02-25 | CO-UB-PWT-200 | -76d | 0d | Glass Fused Bolted (GLS) 1500 m3 Tank with associated accessories & manufacturer recommendation for the foundation [0.05]; Unskilled Labor [40 h]; Skilled Labor [80 h] | 22,033.23 | PW | CON | PT |
|  | 2 | **IrrigationTank** |  | 2027-02-25 | 2027-05-05 |  |  |  |  |  |  |  |  |
|  | 1 | **Eearth Work** |  | 2027-02-25 | 2027-03-16 |  |  |  |  |  |  |  |  |
| CO-UB-IRT-140 |  | Excavation work for tank foundation tank formation level | 6d | 2027-02-25 | 2027-03-07 | CO-UB-PWT-100, CO-UB-PWT-210 | -76d | 0d | Unskilled Labor [112 h]; Excavator [56 h]; Skilled Labor [56 h] |  | UB | CON |  |
| CO-UB-IRT-150 |  | Soil replacement Up to tank formation level | 5d | 2027-03-07 | 2027-03-16 | CO-UB-IRT-140 | -76d | 0d | Glass Fused Bolted (GLS) 1500 m3 Tank with associated accessories & manufacturer recommendation for the foundation [0.02]; Unskilled Labor [80 h]; Excavator [40 h]; Compactor [40 h] | 7,353.58 | UB | CON |  |

| ID | WBS | Activity | Duration | Start | Finish | Predecessors | Complete | Planned start | Planned finish | Total float | Free float | Resources | Cost | Actual cost | 01- Network | 08 Stage |
| --- | --- | --- | --- | --- | --- | --- | --- | --- | --- | --- | --- | --- | --- | --- | --- | --- |
|  | 2 | **Structural Work** |  | 2027-03-17 | 2027-04-03 |  |  |  |  |  |  |  |  |  |  |  |
| CO-UB-IRT-160 |  | Plain Concrete works | 3d | 2027-03-17 | 2027-03-20 | CO-UB-IRT-150 |  |  |  | -76d | 0d | Glass Fused Bolted (GLS) 1500 m3 Tank with associated accessories & manufacturer recommendation for the foundation [0.06]; Unskilled Labor [24 h]; Mason [24 h] | 24,787.37 |  | UB | CON |
| CO-UB-IRT-170 |  | Form work for Tank Foundation | 6d | 2027-03-21 | 2027-03-27 | CO-UB-IRT-160 |  |  |  | -76d | 0d | Glass Fused Bolted (GLS) 1500 m3 Tank with associated accessories & manufacturer recommendation for the foundation [0.1]; Unskilled Labor [144 h]; Carpenter [96 h] | 41,312.28 |  | UB | CON |
| CO-UB-IRT-180 |  | Steel Reinforcement work for Tank Foundation | 5d | 2027-03-28 | 2027-04-01 | CO-UB-IRT-170 |  |  |  | -76d | 0d | Glass Fused Bolted (GLS) 1500 m3 Tank with associated accessories & manufacturer recommendation for the foundation [0.09]; Unskilled Labor [56 h]; Steel Fixer [168 h] | 38,558.13 |  | UB | CON |
| CO-UB-IRT-190 |  | Casting concrete for Tank Foundation | 1d | 2027-04-03 | 2027-04-03 | CO-UB-IRT-180 |  |  |  | -76d | 0d | Glass Fused Bolted (GLS) 1500 m3 Tank with associated accessories & manufacturer recommendation for the foundation [0.03]; Unskilled Labor [8 h]; Mason [8 h] | 13,770.76 |  | UB | CON |
|  | 3 | **Tank Shell Erection&Roof Installation** |  | 2027-04-04 | 2027-04-24 |  |  |  |  |  |  |  |  |  |  |  |
| CO-UB-IRT-200 |  | Bottom ring installation | 6d | 2027-04-04 | 2027-04-10 | CO-UB-IRT-190 |  |  |  | -76d | 0d | Glass Fused Bolted (GLS) 1500 m3 Tank with associated accessories & manufacturer recommendation for the foundation [0.2]; Unskilled Labor [80 h]; Skilled Labor [160 h] | 82,624.57 |  | UB | CON |
| CO-UB-IRT-210 |  | shell erection | 6d | 2027-04-11 | 2027-04-17 | CO-UB-IRT-200 |  |  |  | -76d | 0d | Glass Fused Bolted (GLS) 1500 m3 Tank with associated accessories & manufacturer recommendation for the foundation [0.27]; Unskilled Labor [112 h]; Skilled Labor [224 h] | 110,166.09 |  | UB | CON |
| CO-UB-IRT-220 |  | Aluminum dome / steel roof installation | 6d | 2027-04-18 | 2027-04-24 | CO-UB-IRT-210 |  |  |  | -76d | 0d | Glass Fused Bolted (GLS) 1500 m3 Tank with associated accessories & manufacturer recommendation for the foundation [0.33]; Unskilled Labor [112 h]; Skilled Labor [224 h] | 137,707.61 |  | UB | CON |
|  | 4 | **Mechanical Work&Accessories** |  | 2027-04-25 | 2027-05-05 |  |  |  |  |  |  |  |  |  |  |  |
| CO-UB-IRT-230 |  | Inlet / outlet piping connections | 4d | 2027-04-25 | 2027-04-28 | CO-UB-IRT-220 |  |  |  | -76d | 0d | Glass Fused Bolted (GLS) 1500 m3 Tank with associated accessories & manufacturer recommendation for the foundation [0.2]; Unskilled Labor [48 h]; Plumber [48 h] | 81,697.34 |  | UB | CON |
| CO-UB-IRT-240 |  | installation Valves | 4d | 2027-04-29 | 2027-05-03 | CO-UB-IRT-230 |  |  |  | -76d | 0d | Glass Fused Bolted (GLS) 1500 m3 Tank with associated accessories & manufacturer recommendation for the foundation [0.13]; Unskilled Labor [48 h]; Plumber [48 h] | 55,083.05 |  | UB | CON |
| CO-UB-IRT-250 |  | Ladders, platforms & handrails | 2d | 2027-05-04 | 2027-05-05 | CO-UB-IRT-240 |  |  |  | -76d | 4.2d | Glass Fused Bolted (GLS) 1500 m3 Tank with associated accessories & manufacturer recommendation for the foundation [0.05]; Unskilled Labor [16 h]; Skilled Labor [32 h] | 22,033.23 |  | UB | CON |
|  | 1 | **Control Room** |  | 2026-08-02 | 2027-03-07 |  |  |  |  |  |  |  |  |  |  |  |
|  | 5 | **Civil Work** |  | 2026-08-02 | 2026-12-13 |  |  |  |  |  |  |  |  |  |  |  |
| CO-UB-CR-100 |  | Excavation Work For Control Room Foundation | 7d | 2026-08-02 A | 2026-09-05 A | CO-UB-LS-220 | 100% | 2026-09-15 | 2026-09-24 |  |  | Price; Unskilled Labor [112 h]; Excavator [56 h]; Skilled Labor [56 h] |  |  | UB | CON |
| CO-UB-CR-110 |  | Pouring for Plain Concrete | 5d | 2026-09-08 A | 2026-09-12 A | CO-UB-CR-100 | 100% | 2026-11-08 | 2026-11-12 |  |  | Price [72069.1 SAR]; Unskilled Labor [40 h]; Mason [40 h] | 72,069.14 | 72,069.14 | UB | CON |
| CO-UB-CR-120 |  | Pouring R.C Footing For Control Room | 14d | 2026-09-16 A | 2026-09-30 A | CO-UB-CR-110 | 100% | 2026-11-05 | 2026-11-21 |  |  | Price [180173 SAR]; Unskilled Labor [168 h]; Mason [168 h] | 180,172.87 | 180,172.87 | UB | CON |
| CO-UB-CR-130 |  | Pouring R.C Columns For Control Room | 8d | 2026-11-25 | 2026-12-03 | CO-UB-CR-120 |  |  |  | -8d | 0d | Price [216207 SAR]; Unskilled Labor [96 h]; Mason [96 h] | 144,858.97 |  | UB | CON |
| CO-UB-CR-140 |  | Pouring Beams and Slab For Control Room | 8d | 2026-12-05 | 2026-12-13 | CO-UB-CR-130 |  |  |  | -8d | 0d | Price [252242 SAR]; Unskilled Labor [80 h]; Mason [80 h] | 252,242.01 |  | UB | CON |
|  | 6 | **Finishing Work** |  | 2026-12-14 | 2027-03-07 |  |  |  |  |  |  |  |  |  |  |  |
|  | 1 | **Architictural work** |  | 2026-12-14 | 2027-01-28 |  |  |  |  |  |  |  |  |  |  |  |
| CO-UB-CR-150 |  | Brick Work For Control Room | 9d | 2026-12-14 | 2026-12-23 | CO-UB-CR-140 |  |  |  | -8d | 0d | Price [96092.2 SAR]; Unskilled Labor [320 h]; Mason [320 h] | 96,092.2 |  | UB | CON |
| CO-UB-CR-160 |  | Thermal & Moisture Protection Work for Control Room | 7d | 2026-12-24 | 2026-12-31 | CO-UB-CR-150 |  |  |  | -8d | 0d | Price [96092.2 SAR]; Unskilled Labor [56 h]; Mason [56 h] | 96,092.2 |  | UB | CON |
| CO-UB-CR-200 |  | Install For Curtian Wall and Windows and Doors | 8d | 2027-01-02 | 2027-01-10 | CO-UB-CR-160 |  |  |  | -8d | 0d | Price [96092.2 SAR]; Unskilled Labor [80 h]; Skilled Labor [160 h] | 96,092.2 |  | UB | CON |
| CO-UB-CR-240 |  | External Finshing Work (Walls and Floor) | 8d | 2027-01-11 | 2027-01-19 | CO-UB-CR-200 |  |  |  | -8d | 0d | Price [96092.2 SAR]; Unskilled Labor [80 h]; Skilled Labor [160 h] | 96,092.2 |  | UB | CON |
| CO-UB-CR-250 |  | Internal Finshing Work (Walls,Floor and Ceiling) | 8d | 2027-01-20 | 2027-01-28 | CO-UB-CR-240 |  |  |  | -8d | 0d | Price [96092.2 SAR]; Unskilled Labor [80 h]; Skilled Labor [160 h] | 96,092.2 |  | UB | CON |

| ID | WBS | Activity | Duration | Start | Finish | Predecessors | Total float | Free float | Resources | Cost | 01- Network | 08 Stage |
| --- | --- | --- | --- | --- | --- | --- | --- | --- | --- | --- | --- | --- |
|  | 3 | **Mechanical Work** |  | 2026-12-24 | 2027-02-10 |  |  |  |  |  |  |  |
|  | 3 | **HVAC System** |  | 2026-12-24 | 2027-02-10 |  |  |  |  |  |  |  |
| CO-UB-CR-170 |  | Install of Refrigerant Piping ( fabricated metal ducts with flanges complete with supports, vanes, dampers ) | 4d | 2026-12-24 | 2026-12-28 | CO-UB-CR-150 | 5d | 0d | Price [96092.2 SAR]; Unskilled Labor [32 h]; Electrical Technician [64 h] | 96,092.2 | UB | CON |
| CO-UB-CR-260 |  | Install of Mini split actual capacity 2 Ton and Ducted split actual capacity 4 Ton | 7d | 2027-01-30 | 2027-02-06 | CO-UB-CR-250, CO-UB-CR-170 | 3d | 0d | Price [96092.2 SAR]; Unskilled Labor [56 h]; Electrical Technician [112 h] | 96,092.2 | UB | CON |
| CO-UB-CR-310 |  | Install of Air Grills 150mm x150mm and Air Diffuser 600mm x 600mm | 3d | 2027-02-07 | 2027-02-10 | CO-UB-CR-260, CO-UB-CR-170 | 3d | 11d | Price [96092.2 SAR]; Unskilled Labor [24 h]; Electrical Technician [48 h] | 96,092.2 | UB | CON |
|  | 4 | **Fire Fitting System** |  | 2026-12-29 | 2027-02-01 |  |  |  |  |  |  |  |
| CO-UB-CR-180 |  | Installation & Testing of 2 hours Fire rated system for closing the openings between rooms with help of Rock wool | 4d | 2026-12-29 | 2027-01-02 | CO-UB-CR-170 | 5d | 0d | Price [96092.2 SAR]; Unskilled Labor [32 h]; Electrical Technician [64 h] | 96,092.2 | UB | CON |
| CO-UB-CR-270 |  | Install Fire Extinguishers | 3d | 2027-01-30 | 2027-02-01 | CO-UB-CR-180, CO-UB-CR-250 | 10d | 18d | Price [96092.2 SAR]; Unskilled Labor [24 h]; Electrical Technician [48 h] | 96,092.2 | UB | CON |
|  | 4 | **Electrical Work** |  | 2027-01-03 | 2027-02-27 |  |  |  |  |  |  |  |
|  | 1 | **LV Power** |  | 2027-01-30 | 2027-02-18 |  |  |  |  |  |  |  |
| CO-UB-CR-190 |  | Install of Distribution board For Control Room | 5d | 2027-01-30 | 2027-02-03 | CO-UB-CR-170, CO-UB-CR-150, CO-UB-CR-250 | -2d | 0d | Price [43678.3 SAR]; Unskilled Labor [40 h]; Electrical Technician [80 h] | 43,678.27 | UB | CON |
| CO-UB-CR-220 |  | Install of Earting Cable for Control Room | 5d | 2027-02-04 | 2027-02-10 | CO-UB-CR-190 | -2d | 0d | Price [43678.3 SAR]; Unskilled Labor [40 h]; Electrical Technician [80 h] | 43,678.27 | UB | CON |
| CO-UB-CR-280 |  | Install of Socket outlet and LED Lighting | 5d | 2027-02-10 | 2027-02-18 | CO-UB-CR-190, CO-UB-CR-250, CO-UB-CR-220 | -2d | 6d | Price [43678.3 SAR]; Unskilled Labor [40 h]; Electrical Technician [80 h] | 43,678.27 | UB | CON |
|  | 3 | **Fire Detection And Alarm System** |  | 2027-01-03 | 2027-02-27 |  |  |  |  |  |  |  |
| CO-UB-CR-210 |  | Install of 2C x 1.5 Sqm FR Rated Armored - Cable For Loop Wiring | 5d | 2027-01-03 | 2027-01-07 | CO-UB-CR-170, CO-UB-CR-180 | 5d | 0d | Price [43678.3 SAR]; Unskilled Labor [40 h]; Electrical Technician [80 h] | 43,678.27 | UB | CON |
| CO-UB-CR-230 |  | Install of Transmission Communication cable - Fiber Optics 12Core | 5d | 2027-01-09 | 2027-01-13 | CO-UB-CR-210 | 5d | 13d | Price [43678.3 SAR]; Unskilled Labor [40 h]; Electrical Technician [80 h] | 43,678.27 | UB | CON |
| CO-UB-CR-290 |  | Install of power supply system for fire alarm control panel | 5d | 2027-01-30 | 2027-02-03 | CO-UB-CR-230, CO-UB-CR-250 | -8d | 0d | Price [43678.3 SAR]; Unskilled Labor [40 h]; Electrical Technician [80 h] | 43,678.27 | UB | CON |
| CO-UB-CR-300 |  | Install of Fire Alarm Control panel | 6d | 2027-02-04 | 2027-02-11 | CO-UB-CR-250 FF, CO-UB-CR-210, CO-UB-CR-230, CO-UB-CR-290 | -8d | 0d | Price [43678.3 SAR]; Unskilled Labor [48 h]; Electrical Technician [96 h] | 43,678.27 | UB | CON |
| CO-UB-CR-320 |  | Installation of the addressable manual call point with operation safety glass breaking | 3d | 2027-02-13 | 2027-02-16 | CO-UB-CR-300, CO-UB-CR-250 | -8d | 0d | Price [43678.3 SAR]; Unskilled Labor [24 h]; Electrical Technician [48 h] | 43,678.27 | UB | CON |
| CO-UB-CR-330 |  | Install of the photoelectric heat & smoke detector | 3d | 2027-02-17 | 2027-02-21 | CO-UB-CR-320 | -8d | 0d | Price [43678.3 SAR]; Unskilled Labor [24 h]; Electrical Technician [48 h] | 43,678.27 | UB | CON |
| CO-UB-CR-340 |  | Install of Sounder With Beacon | 3d | 2027-02-17 | 2027-02-21 | CO-UB-CR-330 SS, CO-UB-CR-330 FF | -8d | 0d | Price [43678.3 SAR]; Unskilled Labor [24 h]; Electrical Technician [48 h] | 43,678.27 | UB | CON |
| CO-UB-CR-350 |  | Install of Addressable Control module | 4d | 2027-02-22 | 2027-02-27 | CO-UB-CR-340 | -8d | 0d | Price [43678.3 SAR]; Unskilled Labor [32 h]; Electrical Technician [64 h] | 43,678.27 | UB | CON |
|  | 2 | **Furnitures work** |  | 2027-02-28 | 2027-03-07 |  |  |  |  |  |  |  |
| CO-UB-CR-360 |  | Office Chairs,Tables and Stand | 5d | 2027-02-28 | 2027-03-07 | CO-UB-CR-350, CO-UB-CR-280, CO-UB-CR-270, CO-UB-CR-310 | -8d | 56d | Price [240230 SAR]; Unskilled Labor [40 h]; Skilled Labor [80 h] | 240,230.48 | UB | CON |

| ID | WBS | Activity | Duration | Start | Finish | Predecessors | Total float | Free float | Resources | Cost | 01- Network | 08 Stage | 13 BUILDINGS |
| --- | --- | --- | --- | --- | --- | --- | --- | --- | --- | --- | --- | --- | --- |
|  | ML | **Softscape and Planting Works** |  | 2027-02-01 | 2027-03-28 |  |  |  |  |  |  |  |  |
|  | 1 | **Planting Beds Preparation** |  | 2027-02-01 | 2027-03-02 |  |  |  |  |  |  |  |  |
| CO-LS-PL-100 |  | Excavation of planting beds | 7d | 2027-02-01 | 2027-02-09 | PRO-FE-CV-DL-90, PRO-R25-IR-DL-140 | -61d | 0d | Price [144463 SAR]; Unskilled Labor [112 h]; Excavator [56 h]; Skilled Labor [56 h] | 144,463.44 | UB | CON | LS |
| CO-LS-PL-110 |  | Supply & placement of suitable topsoil | 7d | 2027-02-09 | 2027-02-20 | CO-LS-PL-100 | -61d | 0d | Price [433390 SAR]; Unskilled Labor [40 h]; Skilled Labor [80 h] | 433,390.33 | UB | CON |  |
| CO-LS-PL-120 |  | Soil improvement (fertilizer, compost, additives) | 7d | 2027-02-20 | 2027-03-02 | CO-LS-PL-110 | -61d | 0d | Price [433390 SAR]; Unskilled Labor [40 h]; Skilled Labor [80 h] | 433,390.33 | UB | CON |  |
|  | 2 | **Supports & Protection** |  | 2027-03-02 | 2027-03-14 |  |  |  |  |  |  |  |  |
| CO-LS-PL-130 |  | installation of plant supports / stakes | 3d | 2027-03-02 | 2027-03-07 | CO-LS-PL-120 | -61d | 0d | Price [433390 SAR]; Unskilled Labor [40 h]; Skilled Labor [80 h] | 433,390.33 | UB | CON |  |
| CO-LS-PL-140 |  | Ties and protection materials | 3d | 2027-03-07 | 2027-03-14 | CO-LS-PL-130 | -61d | 0d | Price [577854 SAR]; Unskilled Labor [40 h]; Skilled Labor [80 h] | 577,853.76 | UB | CON |  |
|  | 3 | **Plant Supply** |  | 2027-03-15 | 2027-03-17 |  |  |  |  |  |  |  |  |
| CO-LS-PL-150 |  | installation of trees | 3d | 2027-03-15 | 2027-03-17 | CO-LS-PL-140 | -61d | 0d | Price [866781 SAR]; Unskilled Labor [40 h]; Skilled Labor [80 h] | 866,780.63 | UB | CON |  |
|  | 4 | **Site Furnishings** |  | 2027-03-18 | 2027-03-28 |  |  |  |  |  |  |  |  |
| CO-LS-PL-160 |  | installation of Seating benches | 3d | 2027-03-18 | 2027-03-21 | CO-LS-PL-150 | -61d | 0d | Price [345424 SAR]; Unskilled Labor [40 h]; Skilled Labor [80 h] | 345,423.85 | UB | CON |  |
| CO-LS-PL-170 |  | tone boulders ï¿½ placement & fixing Works | 3d | 2027-03-22 | 2027-03-24 | CO-LS-PL-160 | -61d | 0d | Price [345424 SAR]; Unskilled Labor [40 h]; Skilled Labor [80 h] | 345,423.89 | UB | CON |  |
| CO-LS-PL-180 |  | Gravel Works | 3d | 2027-03-25 | 2027-03-28 | CO-LS-PL-170 | -61d | 28.2d | Price [345424 SAR]; Unskilled Labor [40 h]; Skilled Labor [80 h] | 345,423.89 | UB | CON |  |
|  | 1 | **Fence and Gaurd Room** |  | 2026-07-28 | 2027-05-20 |  |  |  |  |  |  |  |  |
|  | 1 | **Gaurd Room Work** |  | 2026-12-12 | 2027-05-20 |  |  |  |  |  |  |  |  |
|  | 1 | **Civil Work** |  | 2026-12-12 | 2027-01-27 |  |  |  |  |  |  |  |  |
| A1000 |  | Excavation Work For Gaurd Room Foundation | 7d | 2026-12-12 | 2026-12-19 | MS-CF-MOB, ENG-SH-GR-A-190, PRO-GR-CV-1DL-60, PRO-GR-CV-DL-70 | -64d | 0d | Unskilled Labor [112 h]; Excavator [56 h]; Skilled Labor [56 h] |  | GR&FE | CON |  |
| A1010 |  | Pouring for Plain Concrete | 4d | 2026-12-20 | 2026-12-23 | A1000 | -64d | 0d | 100 mm thickness lean concrete under the foundation [149.25]; Unskilled Labor [160 h]; Carpenter [80 h]; Steel Fixer [80 h] | 42,000 | GR&FE | CON |  |
| A1020 |  | Pouring R.C Footing For Gaurd Room | 11d | 2026-12-24 | 2027-01-05 | A1010 | -64d | 0d | Foundation [74.63]; Slab on Grade [29.85]; Walls; Unskilled Labor [672 h]; Carpenter [336 h]; Steel Fixer [336 h] | 60,600 | GR&FE | CON |  |
| A1030 |  | Pouring R.C Columns For Gaurd Room | 10d | 2027-01-06 | 2027-01-17 | A1020 | -64d | 0d | Columns [10.45]; Unskilled Labor [384 h]; Carpenter [192 h]; Steel Fixer [192 h] | 12,600 | GR&FE | CON |  |
| A1040 |  | Pouring Beams and Slab For Gaurd Room | 9d | 2027-01-18 | 2027-01-27 | A1030 | -64d | 0d | Beams [29.85]; Slabs [46.27]; Lightweight Concrete Roof insulation as per Architect's specification [231.34]; Unskilled Labor [320 h]; Carpenter [160 h]; Steel Fixer [160 h] | 82,890 | GR&FE | CON |  |
|  | 2 | **Finishing Work** |  | 2027-01-28 | 2027-05-20 |  |  |  |  |  |  |  |  |
|  | 1 | **Architictural work** |  | 2027-01-28 | 2027-04-01 |  |  |  |  |  |  |  |  |
| A1050 |  | Brick Work For Gaurd Room | 9d | 2027-01-28 | 2027-02-07 | A1040 | -64d | 0d | Common brickwork. 300mm thick; vertical straight wall complete with accessories.; Insulated brickwork. with expanded polystyrene 200mm thick; vertical straight wall complete with accessories . [152.24]; Common brickwork. 150mm thick; vertical straight wall complete with accessories. [268.66]; Unskilled Labor [160 h]; Skilled Labor [320 h] | 32,904 | GR&FE | CON |  |
| A1060 |  | Thermal & Moisture Protection Work for Gaurd Room | 7d | 2027-02-08 | 2027-02-18 | A1050 | -58d | 6d | 2 perpendicular layers of cold bitumen coats [231.34]; 2 layer of 4mm HDPE membrane, 2 perpendicular layers cold bitumen coats [231.34]; 1 layer EPOXY Paint 300 micron [231.34]; Membrane fully bonded to prime deck and upstand [231.34]; Geotextile Filter membrane uv resistance [231.34]; 85mm thick thermal insulation [231.34]; 1.5mm thick epdm waterproofing membrane [231.34]; Unskilled Labor [56 h]; Skilled Labor [112 h] | 40,920 | GR&FE | CON |  |
| A1070 |  | Install For Curtian Wall and Windows and Doors | 8d | 2027-02-28 | 2027-03-14 | A1060, A1130, A1150 | -64d | 0d | CW01 - 4500 mm width x 3700 mm height [1.49]; CW02 - 4500 mm width x 3700 mm height [1.49]; CW03 - 4500 mm width x 3700 mm height [1.49]; CW04 - 4500 mm width x 3700 mm height [1.49]; CW05 - 7500 mm width x 4250 mm height [1.49]; CW06 - 7500 mm width x 4250 mm height [1.49]; W01 - 1000 mm width x 2000 mm height [1.49]; W02 - 2000 mm width x 2000 mm height [2.99]; W03 - 2000 mm width x 1000 mm height [4.48]; D2 - 900 mm x 2200 mm height temper door [10.45]; D3 - 950 mm x 2000 mm height temper door [2.99]; Unskilled Labor [80 h]; Skilled Labor [160 h] | 170,473 | GR&FE | CON |  |
| A1080 |  | External Finshing Work (Walls and Floor) | 8d | 2027-03-15 | 2027-03-23 | A1070 | -64d | 0d | Supply and install 300*300mm terrazzo tiles with 150mm high skirting at perimeter with approv [198.51]; Unskilled Labor [80 h]; Skilled Labor [160 h] | 11,172 | GR&FE | CON |  |
| A1090 |  | Internal Finshing Work (Walls,Floor and Ceiling) | 8d | 2027-03-24 | 2027-04-01 | A1080 | -64d | 0d | Supply and install 300*300mm glazed ceramic wall tiles on cement mortar and including rough [141.79]; Supply and install internal plastering and 2 coats of acrylic paint at walls includin [322.39]; Supply and install 300*300mm glazed ceramic wall tiles on cement mortar and including rough and smooth p [17.91]; Supply and install 600*600mm porcelain tiles with approved quality on 30 mm mortar inclu [186.57]; Supply and install 12.5mm thk, gypsum board suspended ceiling including s [7.46]; Unskilled Labor [80 h]; Skilled Labor [160 h] | 31,668 | GR&FE | CON |  |

| ID | WBS | Activity | Duration | Start | Finish | Predecessors | Total float | Free float | Resources | Cost | 01- Network | 08 Stage |
| --- | --- | --- | --- | --- | --- | --- | --- | --- | --- | --- | --- | --- |
|  | 3 | **Mechanical Work** |  | 2027-02-08 | 2027-04-13 |  |  |  |  |  |  |  |
|  | 1 | **Sanitary Drainage & Plumbing System** |  | 2027-02-08 | 2027-02-27 |  |  |  |  |  |  |  |
| A1110 |  | Install Sanitary Piping System (UPVC) | 4d | 2027-02-08 | 2027-02-14 | A1050 | -64d | 0d | Supply and install Hand Wash Basin with Water Tap, angle valve, P-trap connected to 50mm diameter s [4.48]; Supply and install paper towel dispenser, surface mounted, satin finish stainless steel as per approv [4.48]; Supply and install mirror, size 460*910mm as per approved sample including frames, backing and all accessories to complete. [4.48]; Supply and install towel ring , surface mounted, satin finish stainless steel as per approved sample including accessories. [4.48]; Kitchen sink with single bowl with hot/cold water mixer. [4.48]; 50mm diameter [55.22]; 75mm diameter [5.97]; 80mm diameter [16.42]; 100mm diameter [2.99]; 110mm diameter [17.91]; Floor cleanout, size 75 mm diameter [2.99]; Floor cleanout, size 110 mm diameter [5.97]; Unskilled Labor [32 h]; Skilled Labor [64 h] | 22,224 | GR&FE | CON |
| A1120 |  | Install Base mounted flush tank water Western water closet system | 6d | 2027-02-14 | 2027-02-22 | A1110 | -64d | 0d | Supply and install Base mounted flush tank water Western water closet system with lid connected to 110mm soil pipe [2.99]; Unskilled Labor [48 h]; Skilled Labor [96 h] | 7,680 | GR&FE | CON |
| A1130 |  | Install 1 meter length 10mm diameter Flexible Hose and Gate Valves and Slow Closing Valve | 3d | 2027-02-23 | 2027-02-27 | A1120 | -64d | 0d | Gate Valves [2.99]; Slow Closing Valve [2.99]; 1 meter length 10mm diameter Flexible Hose with insulated handle complete with fork support, index push, vacuum breaker [2.99]; Unskilled Labor [24 h]; Skilled Labor [48 h] | 3,504 | GR&FE | CON |
|  | 2 | **Water Supply System** |  | 2027-02-08 | 2027-04-04 |  |  |  |  |  |  |  |
| A1240 |  | Install GRP water tanks capacity of each 1000 liter | 3d | 2027-02-08 | 2027-02-11 | A1050 | -63d | 0d | GRP water tanks capacity of each 1000 liter complete with all fittings, all valves and concrete pad [4.48]; Unskilled Labor [24 h]; Skilled Labor [48 h] | 25,200 | GR&FE | CON |
| A1140 |  | Install for Cold Water Pipe complete with joints, angles, reducer etc. | 5d | 2027-02-13 | 2027-02-20 | A1240 | -63d | 0d | 13mm diameter [1.49]; 15mm diameter [1.49]; 20mm diameter [1.49]; 25mm diameter [28.36]; 32mm diameter [52.24]; 40mm diameter [17.91]; 50mm diameter [1.49]; Unskilled Labor [40 h]; Skilled Labor [80 h] | 4,044 | GR&FE | CON |
| A1150 |  | Install for Hot Water Pipe complete with joints, angles, reducer etc. | 4d | 2027-02-20 | 2027-02-25 | A1140 | -63d | 0d | 13mm diameter [1.49]; 20mm diameter [7.46]; 25mm diameter [17.91]; Unskilled Labor [32 h]; Skilled Labor [64 h] | 714 | GR&FE | CON |
| A1160 |  | Install for Isolation Valve,Spray Head,Roof Drain,Floor Drain,Gully teap,Vend on Roof to exhaust air | 3d | 2027-02-25 | 2027-03-02 | A1150 | -44d | 0d | Isolation Valve Size 20 [4.48]; Isolation Valve Size 25 [4.48]; Isolation Valve Size 32 [7.46]; Isolation Valve Size 40 [1.49]; Isolation Valve Size 50 [1.49]; 20 mm diameter spray head for cold water supply [4.48]; Roof drain [4.48]; Vent on a roof to exhaust air [4.48]; Floor drain 100x80mm [5.97]; Gully trap 300x300 mm [4.48]; Unskilled Labor [24 h]; Skilled Labor [48 h] | 16,140 | GR&FE | CON |
| A1170 |  | Install of Inspection chamber, size 800x900x1000 | 2d | 2027-03-02 | 2027-03-06 | A1160 | -44d | 20d | inspection chamber, size 800x900x1000 [4.48]; Unskilled Labor [16 h]; Skilled Labor [32 h] | 10,800 | GR&FE | CON |
| A1180 |  | Install OF Electric Water Heater set with connection and Water meter complete with accessories | 2d | 2027-04-03 | 2027-04-04 | A1170, A1090 | -64d | 0d | Supply and install Electric Water Heater set with connection [4.48]; Water meter complete with accessories. [4.48]; Unskilled Labor [16 h]; Skilled Labor [32 h] | 12,600 | GR&FE | CON |
|  | 3 | **HVAC System** |  | 2027-02-14 | 2027-04-13 |  |  |  |  |  |  |  |
| A1200 |  | Install of Refrigerant Piping ( fabricated metal ducts with flanges complete with supports, vanes, dampers ) | 4d | 2027-02-14 | 2027-02-20 | A1050, A1110 | -43d | 0d | Supply, fabricate, install and testing factory fabricated metal ducts with flanges complete with supports, vanes, [59.7]; Supplying, installation testing & commissioning of external insulation on ducts [59.7]; Supply, fix, testing and commissioning of exhaust air/fresh air louvers of powder coated extruded aluminium construction. [1.49]; Providing, fixing, testing and commissioning of powder coated extruded aluminum sections grills and diffusers with dampers. [2.99]; Unskilled Labor [32 h]; Electrical Technician [64 h] | 7,560 | GR&FE | CON |
| A1190 |  | Install of Mini split actual capacity 2 Ton and Ducted split actual capacity 4 Ton | 7d | 2027-04-03 | 2027-04-10 | A1090, A1200 | -42d | 0d | Mini split actual capacity 2 Ton [1.49]; Ducted split actual capacity 4 Ton [2.99]; Unskilled Labor [56 h]; Electrical Technician [112 h] | 18,600 | GR&FE | CON |
| A1210 |  | Install of Air Grills 150mm x150mm and Air Diffuser 600mm x 600mm | 3d | 2027-04-11 | 2027-04-13 | A1190, A1200 | -42d | 22d | Air Grills 150mm x150mm [2.99]; Air Diffuser 600mm x 600mm [8.96]; Unskilled Labor [24 h]; Electrical Technician [48 h] | 3,120 | GR&FE | CON |
|  | 4 | **Fire Fitting System** |  | 2027-02-20 | 2027-04-08 |  |  |  |  |  |  |  |
| A1220 |  | Installation & Testing of 2 hours Fire rated system for closing the openings between rooms with help of Rock wool | 6d | 2027-02-20 | 2027-03-01 | A1200 | -43d | 0d | Supply, Installation & Testing of 2 hours Fire rated system for closing the openings between roo [1.49]; Unskilled Labor [48 h]; Electrical Technician [96 h] | 30,000 | GR&FE | CON |
| A1230 |  | Install Fire Extinguishers | 6d | 2027-04-03 | 2027-04-08 | A1220, A1090 | -38d | 26d | 4.5 KG CO2 Type Fire Extinguishers [5.97]; 6 KG ABC Type Fire Extinguishers [5.97]; Unskilled Labor [48 h]; Electrical Technician [96 h] | 28,800 | GR&FE | CON |
|  | 4 | **Electrical Work** |  | 2027-02-20 | 2027-05-09 |  |  |  |  |  |  |  |
|  | 1 | **LV Power** |  | 2027-02-20 | 2027-04-07 |  |  |  |  |  |  |  |
| A1250 |  | Install of Distribution board For Gaurd Room | 5d | 2027-02-20 | 2027-02-27 | A1200, A1050 | -43d | 0d | Guard Room 1 [1.49]; Guard Room 2 [1.49]; Guard Room 3 [1.49]; Unskilled Labor [40 h]; Electrical Technician [80 h] | 11,904 | GR&FE | CON |
| A1270 |  | Install of Earting Cable for Gaurd Room | 5d | 2027-02-28 | 2027-03-07 | A1250 | -43d | 19d | 4mm2 Cu./FRLSZH Cable [895.52]; 6mm2 Cu./FRLSZH Cable [164.18]; Unskilled Labor [40 h]; Electrical Technician [80 h] | 7,920 | GR&FE | CON |
| A1260 |  | Install of Socket outlet and LED Lighting | 5d | 2027-04-03 | 2027-04-07 | A1250, A1090, A1270 | -37d | 27d | 30A, 2P AC Disconnect Switch [16.42]; 20A Duplex Receptacle Floor Mounted [17.91]; Twin Socket outlet [8.96]; Twin Socket outlet, Weather Proof [7.46]; Single gang Lighting switch [8.96]; 2way Single gang Lighting switch [2.99]; 36W LED linear Pendant lighting [20.9]; 36W LED Emergency linear Pendant lighting [8.96]; 13W recess mounted LED down light fitting [11.94]; 13W recess emergency mounted LED down light fitting with 1.5 Hr Battery [8.96]; 10.4W LED Exit light with 1.5 Hr Battery [4.48]; Unskilled Labor [40 h]; Electrical Technician [80 h] | 47,976 | GR&FE | CON |

| ID | WBS | Activity | Duration | Start | Finish | Predecessors | Complete | Remaining | Planned start | Planned finish | Total float | Free float | Resources | Cost | 01- Network | 08 Stage | 12 FENCE |
| --- | --- | --- | --- | --- | --- | --- | --- | --- | --- | --- | --- | --- | --- | --- | --- | --- | --- |
|  | 3 | **Fire Detection And Alarm System** |  | 2027-03-01 | 2027-04-26 |  |  |  |  |  |  |  |  |  |  |  |  |
| A1340 |  | Install of 2C x 1.5 Sqm FR Rated Armored - Cable For Loop Wiring | 5d | 2027-03-01 | 2027-03-08 | A1200, A1220 |  |  |  |  | -43d | 0d | 2C x 1.5 Sqm FR Rated Armored - Cable For Loop Wiring [2686.57]; DACT (Auto - Dailer) for 24x7 Civil Defence [1.49]; Unskilled Labor [40 h]; Electrical Technician [80 h] | 27,000 | GR&FE | CON |  |
| A1350 |  | Install of Transmission Communication cable - Fiber Optics 12Core | 5d | 2027-03-13 | 2027-03-17 | A1340 |  |  |  |  | -43d | 13d | Transmission Communication cable - Fiber Optics 12Core [3731.34]; Transmission Communication cable - Ethernet Cable [746.27]; Supply, install to site and installation of power cable [2388.06]; Fire Fighter’s Telephone Centre [1.49]; Fireman’s Telephone Jack [2.99]; Voice Command Center [1.49]; Unskilled Labor [40 h]; Electrical Technician [80 h] | 129,735 | GR&FE | CON |  |
| A1360 |  | Install of power supply system for fire alarm control panel | 5d | 2027-04-03 | 2027-04-07 | A1350, A1090 |  |  |  |  | -56d | 0d | Supply, install to site and installation of power supply system for fire alarm control panel [1.49]; Unskilled Labor [40 h]; Electrical Technician [80 h] | 4,617 | GR&FE | CON |  |
| A1280 |  | Install of Fire Alarm Control panel | 6d | 2027-04-08 | 2027-04-14 | A1090 FF, A1340, A1350, A1360 |  |  |  |  | -56d | 0d | Fire Alarm Control panel with fire alarm zoning with Mimic panel with fire alarm zoning [5.97]; Main Fire Alarm Control panel with fire alarm zoning with Mimic panel with fire alarm zoning [1.49]; Unskilled Labor [48 h]; Electrical Technician [96 h] | 40,620 | GR&FE | CON |  |
| A1290 |  | Installation of the addressable manual call point with operation safety glass breaking | 3d | 2027-04-15 | 2027-04-18 | A1280, A1090 |  |  |  |  | -56d | 0d | Supply and installation of the addressable manual call point with operation safety glass breaking and pushbutton [25.37]; Unskilled Labor [24 h]; Electrical Technician [48 h] | 4,182 | GR&FE | CON |  |
| A1300 |  | Install of the photoelectric heat & smoke detector | 3d | 2027-04-19 | 2027-04-21 | A1290 |  |  |  |  | -56d | 0d | Supply and installation of the photoelectric heat & smoke detector with base [61.19]; Unskilled Labor [24 h]; Electrical Technician [48 h] | 14,760 | GR&FE | CON |  |
| A1310 |  | Install of Sounder With Beacon | 3d | 2027-04-19 | 2027-04-21 | A1300 SS, A1300 FF |  |  |  |  | -56d | 0d | Sounder With Beacon [29.85]; Unskilled Labor [24 h]; Electrical Technician [48 h] | 4,920 | GR&FE | CON |  |
| A1320 |  | Install of Addressable Control module | 4d | 2027-04-22 | 2027-04-26 | A1310 |  |  |  |  | -56d | 8d | Addressable Control module for Sounders [29.85]; Addressable Control module for HVAC System [2.99]; Addressable Monitor module for HVAC System [2.99]; Unskilled Labor [32 h]; Electrical Technician [64 h] | 7,126 | GR&FE | CON |  |
|  | 2 | **Security System** |  | 2027-04-05 | 2027-05-09 |  |  |  |  |  |  |  |  |  |  |  |  |
| A1580 |  | Install 8 Port Industrial PoE Switch 10/100BaseT (0 deg to +70 deg. Celsius) | 5d | 2027-04-05 | 2027-04-10 | A1250, A1090, A1180, A1270 |  |  |  |  | -64d | 0d | 8 Port Industrial PoE Switch 10/100BaseT (0 deg to +70 deg. Celsius) [46.27]; Unskilled Labor [48 h]; Electrical Technician [96 h] | 337,590 | GR&FE | CON |  |
| A1590 |  | Optical Fiber,48 Core Splice Closure | 3d | 2027-04-11 | 2027-04-13 | A1580 |  |  |  |  | -63d | 1d | 06C Optical Fiber SM [3738.81]; 48C Optical Fiber SM [10462.7]; 48 Core Splice Closure [10.45]; Unskilled Labor [24 h]; Electrical Technician [48 h] | 277,542 | GR&FE | CON |  |
| A1650 |  | Pole/Bollard mounted IP( PoE) and 12U rack dimension | 4d | 2027-04-11 | 2027-04-14 | A1580 |  |  |  |  | -64d | 0d | Pole/Bollard mounted IP( PoE), Automatic Number Plate Recognition (ANPR, camera, 5MP,IP 66, IR illumin [8.96]; 12U rack dimension (W x H x L) 600 x 625 x 600 mm [1.49]; Unskilled Labor [32 h]; Electrical Technician [64 h] | 114,735 | GR&FE | CON |  |
| A1600 |  | Boom Barrier at Security Guard Room | 5d | 2027-04-15 | 2027-04-20 | A1590, A1650 |  |  |  |  | -64d | 0d | Magnetic Control Access barrier, Automatic Vehicular Barriers to be installed on ground with magnetic access [8.96]; Boom Barrier at Security Guard Room [8.96]; Unskilled Labor [48 h]; Electrical Technician [96 h] | 239,100 | GR&FE | CON |  |
| A1610 |  | Pedestrian turnstile at Security Guard Room | 5d | 2027-04-21 | 2027-04-26 | A1600 |  |  |  |  | -64d | 0d | Pedestrian turnstile at Security Guard Room [8.96]; Unskilled Labor [56 h]; Electrical Technician [112 h] | 149,917.85 | GR&FE | CON |  |
| A1620 |  | Access Control Unit and Access Card Reader | 4d | 2027-04-27 | 2027-05-01 | A1610 |  |  |  |  | -64d | 0d | Access Control Unit [4.48]; Access Card Reader [4.48]; Unskilled Labor [32 h]; Electrical Technician [64 h] | 14,268 | GR&FE | CON |  |
| A1630 |  | Magnetic Lock and Break Glass and Exit Push button | 4d | 2027-05-02 | 2027-05-05 | A1620 |  |  |  |  | -64d | 0d | Magnetic Lock [4.48]; Break Glass [4.48]; Exit Push button [4.48]; Unskilled Labor [40 h]; Electrical Technician [80 h] | 4,485 | GR&FE | CON |  |
| A1640 |  | Door Sensor and Biometrics Reader | 3d | 2027-05-06 | 2027-05-09 | A1630, A1320 |  |  |  |  | -64d | 0d | Door Sensor [4.48]; Biometrics Reader [2.99]; Unskilled Labor [24 h]; Electrical Technician [48 h] | 1,870 | GR&FE | CON |  |
|  | 2 | **Furnitures work** |  | 2027-05-10 | 2027-05-20 |  |  |  |  |  |  |  |  |  |  |  |  |
| A1100 |  | Office Chairs,Tables and Stand | 5d | 2027-05-10 | 2027-05-20 | A1640, A1320, A1260, A1230, A1210, A1180 |  |  |  |  | -64d | 0d | Office Chairs [5.97]; Office Tables [5.97]; Guard Stand [2.99]; Unskilled Labor [40 h]; Skilled Labor [80 h] | 21,600 | GR&FE | CON |  |
|  | 2 | **Fence Work** |  | 2026-07-28 | 2027-05-03 |  |  |  |  |  |  |  |  |  |  |  |  |
|  | 1 | **Northern Fence N01:N03** |  | 2026-07-28 | 2027-01-21 |  |  |  |  |  |  |  |  |  |  |  |  |
|  | 1 | **Civil Work** |  | 2026-07-28 | 2026-10-22 |  |  |  |  |  |  |  |  |  |  |  |  |
| CO-SU-FE-N-CI-100 |  | Excavation Work For Northern Fence | 4d | 2026-07-28 A | 2026-08-01 A | ENG-SH-GR-A-200_R, PRO-FE-CV-DL-80 SS+3d, CO-EW-110_R SS+5d | 100% |  |  |  |  |  | Unskilled Labor [112 h]; Excavator [56 h]; Skilled Labor [56 h] |  | GR&FE | CON | NORTH |
| CO-SU-FE-N-CI-110 |  | Pouring for Plain Concrete Northern Fence | 3.5d | 2026-08-02 A | 2026-10-10 | CO-SU-FE-N-CI-100 | 95% | 3.5d | 2026-08-02 | 2026-08-05 | -42d | 0d | 100 mm thickness lean concrete under the foundation [189.96]; Unskilled Labor [96 h]; Carpenter [48 h]; Steel Fixer [48 h] | 53,454.55 | GR&FE | CON | NORTH |
| CO-SU-FE-N-CI-120 |  | Pouring R.C Footing For Northern Fence | 6d | 2026-08-02 A | 2026-10-12 | CO-SU-FE-N-CI-110 SS | 85% | 6d | 2026-08-05 | 2026-08-12 | -42d | 0d | Foundation [2477.61]; Slab on Grade; Unskilled Labor [320 h]; Carpenter [160 h]; Steel Fixer [160 h] | 1,494,000 | GR&FE | CON | NORTH |
| CO-SU-FE-N-CI-130 |  | Pouring R.C Columns For Northern Fence | 5d | 2026-10-13 | 2026-10-18 | CO-SU-FE-N-CI-120, CO-SU-FE-N-CI-100 |  |  |  |  | -42d | 0d | Walls [564.18]; Columns [49.53]; Unskilled Labor [160 h]; Carpenter [80 h]; Steel Fixer [80 h] | 649,407.27 | GR&FE | CON | NORTH |
| CO-SU-FE-N-CI-140 |  | Pouring Beams For Northern Fence | 4d | 2026-10-19 | 2026-10-22 | CO-SU-FE-N-CI-130, CO-SU-FE-N-AR-100, CO-SU-FE-WP1-CI-150 |  |  |  |  | -16d | 0d | Beams [36.36]; Unskilled Labor [128 h]; Carpenter [64 h]; Steel Fixer [64 h] | 40,930.91 | GR&FE | CON | NORTH |

| ID | WBS | Activity | Duration | Start | Finish | Predecessors | Complete | Remaining | Planned start | Planned finish | Total float | Free float | Resources | Cost | 01- Network | 08 Stage | 12 FENCE |
| --- | --- | --- | --- | --- | --- | --- | --- | --- | --- | --- | --- | --- | --- | --- | --- | --- | --- |
|  | 5 | **Finishing Work** |  | 2026-09-29 | 2027-01-21 |  |  |  |  |  |  |  |  |  |  |  |  |
|  | 3 | **Electrical Work** |  | 2026-10-19 | 2027-01-21 |  |  |  |  |  |  |  |  |  |  |  |  |
| CO-SU-FE-N-EL-100 |  | Trench excavation to receive 2 nos 50mm diameter PVC Conduit | 8d | 2026-10-19 | 2026-10-27 | CO-SU-FE-N-AR-100 |  |  |  |  | -42d | 0d | Trench excavation to receive 2 nos 50mm diameter PVC Conduit, sand bedding and embedded with sa [475.58]; Unskilled Labor [80 h]; Electrical Technician [160 h] | 17,843.64 | GR&FE | CON | NORTH |
| CO-SU-FE-N-EL-110 |  | Trench excavation to receive 3 nos 50mm diameter PVC Conduit | 8d | 2026-10-19 | 2026-10-27 | CO-SU-FE-N-EL-100 SS |  |  |  |  | -42d | 0d | 800mm depth minimum Trench excavation to receive 3 nos 50mm diameter PVC Conduit with spacer, sand bedding an [203.53]; Unskilled Labor [80 h]; Electrical Technician [160 h] | 8,181.82 | GR&FE | CON | NORTH |
| CO-SU-FE-N-EL-120 |  | Fixing of Control cable,CAT6A cable | 9d | 2026-10-28 | 2026-11-07 | CO-SU-FE-N-EL-100, CO-SU-FE-N-EL-110 |  |  |  |  | -42d | 0d | Control cable [421.98]; CAT6A cable [421.98]; Unskilled Labor [96 h]; Electrical Technician [192 h] | 4,240.91 | GR&FE | CON | NORTH |
| CO-SU-FE-N-EL-130 |  | Install 800mm x 800mm x 800mm height concrete handhole | 9d | 2026-10-28 | 2026-11-07 | CO-SU-FE-N-EL-100, CO-SU-FE-N-EL-110 |  |  |  |  | -42d | 0d | Supply and install 800mm x 800mm x 800mm height concrete handhole with bituminous paint all aroun [2.58]; Unskilled Labor [96 h]; Electrical Technician [192 h] | 4,435.64 | GR&FE | CON | NORTH |
| CO-SU-FE-N-EL-140 |  | Hot dipped galvanized cable conduits for CAT6A cable and Control Cables embedded to wall | 8d | 2026-10-28 | 2026-11-05 | CO-SU-FE-N-EL-100, CO-SU-FE-N-EL-110 |  |  |  |  | -41d | 1d | Hot dipped galvanized cable conduits for CAT6A cable and Control Cables embedded to wall [56.99]; 400V, 3PH, 60Hz lighting control panel (LCP-02) [0.14]; Unskilled Labor [88 h]; Electrical Technician [176 h] | 5,767.36 | GR&FE | CON | NORTH |
| CO-SU-FE-N-EL-150 |  | Fixing Earthing Work (Earth Pit,Grounding rod,Tinned Copper wire) | 8d | 2026-11-08 | 2026-11-16 | CO-SU-FE-N-EL-120, CO-SU-FE-N-EL-130, CO-SU-FE-N-EL-140 |  |  |  |  | -42d | 0d | Earth Pit [2.31]; Grounding rod 20mmX3m [1.22]; Grounding rod with Pit 20mmX3m [0.54]; Earthing Bar [0.41]; 120mm2 Tinned copper wire [27.14]; Unskilled Labor [128 h]; Electrical Technician [256 h] | 2,608.82 | GR&FE | CON | NORTH |
| CO-SU-FE-N-EL-160 |  | Field Equipment Cabinet enclosed outdoor complete with precast concrete footing, | 8d | 2026-11-17 | 2026-11-25 | CO-SU-FE-N-EL-150 |  |  |  |  | -42d | 0d | Field Equipment Cabinet enclosed outdoor complete with precast concrete footing, suitable for parame [2.58]; Unskilled Labor [80 h]; Electrical Technician [160 h] | 15,946.18 | GR&FE | CON | NORTH |
| CO-SU-FE-N-EL-170 |  | Fence Lightining 400V, 3PH, 60Hz lighting control panelï¿½ (LCP-02) | 8d | 2026-11-17 | 2026-11-25 | CO-SU-FE-N-EL-150 |  |  |  |  | -42d | 0d | Unskilled Labor [64 h]; Electrical Technician [128 h] |  | GR&FE | CON | NORTH |
| CO-SU-FE-N-EL-180 |  | Install of direct buried armored cable 4C-16mm2 ,10mm2 | 9d | 2026-11-26 | 2026-12-06 | CO-SU-FE-N-EL-160, CO-SU-FE-N-EL-170 |  |  |  |  | -42d | 0d | 4C-16mm2 CU/XLPE/PVC direct buried armored cable [176.39]; 4C-10mm2 CU/XLPE/PVC direct buried armored cable [115.33]; Unskilled Labor [72 h]; Electrical Technician [144 h] | 11,145.45 | GR&FE | CON | NORTH |
| CO-SU-FE-N-EL-190 |  | Install 16mm2,10mm2 CU/PVC wire | 9d | 2026-11-26 | 2026-12-06 | CO-SU-FE-N-EL-160, CO-SU-FE-N-EL-170 |  |  |  |  | -42d | 0d | 16mm2 CU/PVC wire [176.39]; 10mm2 CU/PVC wire [115.33]; Unskilled Labor [72 h]; Electrical Technician [144 h] | 1,995.45 | GR&FE | CON | NORTH |
| CO-SU-FE-N-EL-200 |  | FEC-CCTV ( 4C-16mm2 CU/XLPE/PVC direct buried armored cable,16mm2 CU/PVC wire | 8d | 2026-11-26 | 2026-12-05 | CO-SU-FE-N-EL-160, CO-SU-FE-N-EL-170 |  |  |  |  | -41d | 1d | 4C-16mm2 CU/XLPE/PVC direct buried armored cable [553.6]; 16mm2 CU/PVC wire [553.6]; Unskilled Labor [64 h]; Electrical Technician [128 h] | 25,963.64 | GR&FE | CON | NORTH |
| CO-SU-FE-N-EL-210 |  | Junction Box for lighting fixture | 8d | 2026-12-07 | 2026-12-15 | CO-SU-FE-N-EL-180, CO-SU-FE-N-EL-190 |  |  |  |  | -40d | 0d | Junction Box for lighting fixture [18.45]; Unskilled Labor [64 h]; Electrical Technician [128 h] | 1,520.73 | GR&FE | CON | NORTH |
| CO-SU-FE-N-EL-220 |  | IR Intrusion Detection System Quad Beams | 8d | 2027-01-04 | 2027-01-12 | CO-SU-FE-N-EL-180, CO-SU-FE-N-EL-190, CO-SU-FE-N-EL-200, CO-SU-FE-N-EL-210, CO-SU-FE-N-AR-130, CO-SU-FE-N-AR-140, CO-SU-FE-N-AR-120, CO-SU-FE-EP2-AR-400 |  |  |  |  | 0d | 1d | IR Intrusion Detection System Quad Beams (Tx & Rx) (SL-350 QDM) [8.14]; Unskilled Labor [64 h]; Electrical Technician [128 h] | 57,469.09 | GR&FE | CON | NORTH |
| CO-SU-FE-N-EL-230 |  | Install of 38W, 230V, 1PH, 60Hz fence, led linear uplight lighting, IP66 | 9d | 2027-01-04 | 2027-01-13 | CO-SU-FE-N-EL-190, CO-SU-FE-N-EL-200, CO-SU-FE-N-EL-210, CO-SU-FE-N-AR-120, CO-SU-FE-N-AR-130, CO-SU-FE-N-AR-140, CO-SU-FE-EP2-AR-400 |  |  |  |  | -1d | 0d | 38W, 230V, 1PH, 60Hz fence, led linear uplight lighting, IP66 [18.45]; Unskilled Labor [72 h]; Electrical Technician [144 h] | 8,456.73 | GR&FE | CON | NORTH |
| CO-SU-FE-N-EL-240 |  | Install, fixings, testing and commissioning 80W LED | 7d | 2027-01-14 | 2027-01-21 | CO-SU-FE-N-EL-220, CO-SU-FE-N-EL-230 |  |  |  |  | -1d | 38d | Supply, Install, fixings, testing and commissioning 80W LED Projector waterproof DJ effect light including c [0.41]; Unskilled Labor [56 h]; Electrical Technician [112 h] | 370.64 | GR&FE | CON | NORTH |
|  | 4 | **Architictural work** |  | 2026-09-29 | 2027-01-13 |  |  |  |  |  |  |  |  |  |  |  |  |
| CO-SU-FE-N-AR-100 |  | Install Brick Work For Northern Fence | 8.5d | 2026-09-29 A | 2026-10-18 | CO-SU-FE-N-CI-130 FF | 23% | 8.5d | 2026-10-12 | 2026-10-21 | -42d | 0d | Common brickwork. 300mm thick; vertical straight wall complete with accessories. [1190.64]; Insulated brickwork. with expanded polystyrene 200mm thick; vertical straight wall complete with accessories .; Common brickwork. 150mm thick; vertical straight wall complete with accessories.; Two Layers of Bituminous Coating [5314.79]; 20x20 Approved Polysulfide Joint Sealant [56.31]; Unskilled Labor [80 h]; Skilled Labor [160 h] | 158,509.09 | GR&FE | CON | NORTH |
| CO-SU-FE-N-AR-110 |  | External plastering to walls and columns | 7d | 2026-12-07 | 2026-12-14 | CO-SU-FE-N-AR-100, CO-SU-FE-N-CI-140, CO-SU-FE-N-EL-200, CO-SU-FE-N-EL-190, CO-SU-FE-N-EL-180 |  |  |  |  | -42d | 0d | Unskilled Labor [56 h]; Skilled Labor [112 h] |  | GR&FE | CON | NORTH |
| CO-SU-FE-N-AR-120 |  | Install 50mm thick random cut stone cladding | 7d | 2026-12-15 | 2026-12-22 | CO-SU-FE-N-AR-110 |  |  |  |  | -42d | 0d | Supply and install 33mm thick Lexan cladding blue complete with necessary framings [151.28]; Supply and install 50mm thick random cut stone cladding complete with 600m [8659.7]; Supply and install External plastering to walls and columns min. 15mm thick with cement mortar of specified grade including [2274.76]; Unskilled Labor [56 h]; Skilled Labor [112 h] | 2,046,910.47 | GR&FE | CON | NORTH |
| CO-SU-FE-N-AR-130 |  | Install 2 coats of weatherproof paint at walls | 6d | 2026-12-23 | 2026-12-29 | CO-SU-FE-N-AR-120 |  |  |  |  | -42d | 0d | Supply and install 2 coats of weatherproof paint at walls including one prime coat and [2274.76]; Unskilled Labor [48 h]; Skilled Labor [96 h] | 64,011.82 | GR&FE | CON | NORTH |
| CO-SU-FE-N-AR-140 |  | Install Stone coping 500mm,525mm | 4d | 2026-12-30 | 2027-01-03 | CO-SU-FE-N-AR-130 |  |  |  |  | -42d | 0d | Guard room coping 350mm [7.73]; Guard room coping 450mm [3.66]; Stone coping 500mm [346.68]; Stone coping 525mm [166.08]; Unskilled Labor [32 h]; Skilled Labor [64 h] | 74,029.64 | GR&FE | CON | NORTH |
| CO-SU-FE-N-AR-150 |  | Install MODON Signage | 7d | 2027-01-06 | 2027-01-13 | CO-SU-FE-N-AR-140, CO-SU-FE-WP2-AR-260 |  |  |  |  | 2d | 41d | Supply and install MODON Signage with Logo Type 1 [3.26]; Supply and install MODON Signage Type 2 [3.26]; Supply and install "Triangle Style" signage [7.46]; Unskilled Labor [56 h]; Skilled Labor [112 h] | 64,363.64 | GR&FE | CON | NORTH |

| ID | WBS | Activity | Duration | Start | Finish | Predecessors | Complete | Remaining | Planned start | Planned finish | Total float | Free float | Resources | Cost | 01- Network | 08 Stage | 12 FENCE |
| --- | --- | --- | --- | --- | --- | --- | --- | --- | --- | --- | --- | --- | --- | --- | --- | --- | --- |
|  | 2 | **Western Fence P1 ( W01:W06 )** |  | 2026-08-02 | 2027-03-22 |  |  |  |  |  |  |  |  |  |  |  |  |
|  | 1 | **Civil Work** |  | 2026-08-02 | 2026-11-21 |  |  |  |  |  |  |  |  |  |  |  |  |
| CO-SU-FE-WP1-CI-160 |  | Pouring for Plain Concrete Northern Fence | 5d | 2026-08-02 A | 2026-10-11 | CO-SU-FE-WP1-CI-150 | 95% | 5d | 2026-08-27 | 2026-09-02 | -9d | 7d | 100 mm thickness lean concrete under the foundation [379.92]; Unskilled Labor [160 h]; Carpenter [80 h]; Steel Fixer [80 h] | 106,909.09 | GR&FE | CON | W.F.P1 |
| CO-SU-FE-WP1-CI-170 |  | Pouring R.C Footing For Northern Fence | 8d | 2026-08-02 A | 2026-10-22 | CO-SU-FE-WP1-CI-160 SS, CO-SU-FE-N-CI-140 FF | 85% | 8d | 2026-09-02 | 2026-09-12 | -16d | 0d | Foundation [1970.15]; Slab on Grade; Unskilled Labor [480 h]; Carpenter [240 h]; Steel Fixer [240 h] | 1,188,000 | GR&FE | CON | W.F.P1 |
| CO-SU-FE-WP1-CI-150 |  | Excavation Work For Northern Fence | 8d | 2026-08-18 A | 2026-08-27 A | CO-SU-FE-N-CI-120 SS | 100% |  |  |  |  |  | Unskilled Labor [160 h]; Excavator [80 h]; Skilled Labor [80 h] |  | GR&FE | CON | W.F.P1 |
| CO-SU-FE-WP1-CI-180 |  | Pouring R.C Columns For Northern Fence | 16d | 2026-09-17 A | 2026-11-01 | CO-SU-FE-WP1-CI-170 FF, CO-SU-FE-WP1-CI-150 FF, CO-SU-FE-WP1-CI-170 SS | 30% | 16d | 2026-10-20 | 2026-11-08 | -16d | 0d | Walls [531.89]; Columns [99.05]; Unskilled Labor [384 h]; Carpenter [192 h]; Steel Fixer [192 h] | 675,381.82 | GR&FE | CON | W.F.P1 |
| CO-SU-FE-WP1-CI-190 |  | Pouring Beams For Northern Fence | 17d | 2026-11-02 | 2026-11-21 | CO-SU-FE-WP1-CI-180, CO-SU-FE-WP1-AR-160, CO-SU-FE-WP2-CI-200 |  |  |  |  | 2d | 0d | Beams [72.73]; Unskilled Labor [608 h]; Carpenter [304 h]; Steel Fixer [304 h] | 81,861.82 | GR&FE | CON | W.F.P1 |
|  | 5 | **Finishing Work** |  | 2026-09-29 | 2027-03-22 |  |  |  |  |  |  |  |  |  |  |  |  |
|  | 3 | **Electrical Work** |  | 2026-11-02 | 2027-03-22 |  |  |  |  |  |  |  |  |  |  |  |  |
| CO-SU-FE-WP1-EL-260 |  | Trench excavation to receive 2 nos 50mm diameter PVC Conduit | 14d | 2026-11-02 | 2026-11-17 | CO-SU-FE-WP1-AR-160, CO-SU-FE-N-EL-100 |  |  |  |  | -16d | 0d | Trench excavation to receive 2 nos 50mm diameter PVC Conduit, sand bedding and embedded with sa [951.15]; Unskilled Labor [144 h]; Electrical Technician [288 h] | 35,687.27 | GR&FE | CON | W.F.P1 |
| CO-SU-FE-WP1-EL-320 |  | Trench excavation to receive 3 nos 50mm diameter PVC Conduit | 14d | 2026-11-02 | 2026-11-17 | CO-SU-FE-WP1-EL-260 SS, CO-SU-FE-N-EL-110 |  |  |  |  | -16d | 0d | 800mm depth minimum Trench excavation to receive 3 nos 50mm diameter PVC Conduit with spacer, sand bedding an [407.06]; Unskilled Labor [152 h]; Electrical Technician [304 h] | 16,363.64 | GR&FE | CON | W.F.P1 |
| CO-SU-FE-WP1-EL-300 |  | Fixing of Control cable,CAT6A cable | 14d | 2026-11-18 | 2026-12-03 | CO-SU-FE-WP1-EL-260, CO-SU-FE-WP1-EL-320, CO-SU-FE-N-EL-120 |  |  |  |  | -16d | 26d | Control cable [843.96]; CAT6A cable [843.96]; Unskilled Labor [112 h]; Electrical Technician [224 h] | 8,481.82 | GR&FE | CON | W.F.P1 |
| CO-SU-FE-WP1-EL-330 |  | Hot dipped galvanized cable conduits for CAT6A cable and Control Cables embedded to wall | 14d | 2026-11-18 | 2026-12-03 | CO-SU-FE-WP1-EL-260, CO-SU-FE-WP1-EL-320, CO-SU-FE-N-EL-140 |  |  |  |  | -16d | 26d | Hot dipped galvanized cable conduits for CAT6A cable and Control Cables embedded to wall [113.98]; 400V, 3PH, 60Hz lighting control panel (LCP-02) [0.27]; Unskilled Labor [112 h]; Electrical Technician [224 h] | 11,534.73 | GR&FE | CON | W.F.P1 |
| CO-SU-FE-WP1-EL-310 |  | Install 800mm x 800mm x 800mm height concrete handhole | 14d | 2026-12-16 | 2026-12-31 | CO-SU-FE-WP1-EL-260, CO-SU-FE-WP1-EL-320, CO-SU-FE-N-EL-130, CO-SU-FE-N-EL-210 |  |  |  |  | -40d | 2d | Supply and install 800mm x 800mm x 800mm height concrete handhole with bituminous paint all aroun [5.16]; Unskilled Labor [128 h]; Electrical Technician [256 h] | 8,871.27 | GR&FE | CON | W.F.P1 |
| CO-SU-FE-WP1-EL-280 |  | Fixing Earthing Work (Earth Pit,Grounding rod,Tinned Copper wire) | 11d | 2027-01-04 | 2027-01-16 | CO-SU-FE-WP1-EL-300, CO-SU-FE-WP1-EL-310, CO-SU-FE-WP1-EL-330, CO-SU-FE-N-EL-150, CO-SU-FE-N-AR-140, CO-SU-FE-N-EL-210 |  |  |  |  | -42d | 0d | Earth Pit [4.61]; Grounding rod 20mmX3m [2.44]; Grounding rod with Pit 20mmX3m [1.09]; Earthing Bar [0.81]; 120mm2 Tinned copper wire [54.27]; Unskilled Labor [112 h]; Electrical Technician [224 h] | 5,217.64 | GR&FE | CON | W.F.P1 |
| CO-SU-FE-WP1-EL-340 |  | Field Equipment Cabinet enclosed outdoor complete with precast concrete footing, | 9d | 2027-01-17 | 2027-01-26 | CO-SU-FE-WP1-EL-280, CO-SU-FE-N-EL-160 |  |  |  |  | -42d | 0d | Field Equipment Cabinet enclosed outdoor complete with precast concrete footing, suitable for parame [5.16]; Unskilled Labor [72 h]; Electrical Technician [144 h] | 31,892.36 | GR&FE | CON | W.F.P1 |
| CO-SU-FE-WP1-EL-350 |  | Fence Lightining 400V, 3PH, 60Hz lighting control panelï¿½ (LCP-02) | 9d | 2027-01-17 | 2027-01-26 | CO-SU-FE-WP1-EL-280, CO-SU-FE-N-EL-170 |  |  |  |  | -42d | 0d | Unskilled Labor [72 h]; Electrical Technician [144 h] |  | GR&FE | CON | W.F.P1 |
| CO-SU-FE-WP1-EL-360 |  | Install of direct buried armored cable 4C-16mm2 ,10mm2 | 8d | 2027-01-27 | 2027-02-04 | CO-SU-FE-WP1-EL-340, CO-SU-FE-WP1-EL-350, CO-SU-FE-N-EL-180 |  |  |  |  | -41d | 0d | 4C-16mm2 CU/XLPE/PVC direct buried armored cable [352.78]; 4C-10mm2 CU/XLPE/PVC direct buried armored cable [230.66]; Unskilled Labor [80 h]; Electrical Technician [160 h] | 22,290.91 | GR&FE | CON | W.F.P1 |
| CO-SU-FE-WP1-EL-370 |  | Install 16mm2,10mm2 CU/PVC wire | 8d | 2027-01-27 | 2027-02-04 | CO-SU-FE-WP1-EL-340, CO-SU-FE-WP1-EL-350, CO-SU-FE-N-EL-190 |  |  |  |  | -41d | 0d | 16mm2 CU/PVC wire [352.78]; 10mm2 CU/PVC wire [230.66]; Unskilled Labor [80 h]; Electrical Technician [160 h] | 3,990.91 | GR&FE | CON | W.F.P1 |
| CO-SU-FE-WP1-EL-390 |  | FEC-CCTV ( 4C-16mm2 CU/XLPE/PVC direct buried armored cable,16mm2 CU/PVC wire | 9d | 2027-01-27 | 2027-02-06 | CO-SU-FE-WP1-EL-340, CO-SU-FE-WP1-EL-350, CO-SU-FE-N-EL-200 |  |  |  |  | -42d | 0d | 4C-16mm2 CU/XLPE/PVC direct buried armored cable [1107.19]; 16mm2 CU/PVC wire [1107.19]; Unskilled Labor [72 h]; Electrical Technician [144 h] | 51,927.27 | GR&FE | CON | W.F.P1 |
| CO-SU-FE-WP1-EL-250 |  | Junction Box for lighting fixture | 11d | 2027-02-06 | 2027-02-21 | CO-SU-FE-WP1-EL-360, CO-SU-FE-WP1-EL-370, CO-SU-FE-N-EL-210 |  |  |  |  | -38d | 0d | Junction Box for lighting fixture [36.91]; Unskilled Labor [64 h]; Electrical Technician [128 h] | 3,041.45 | GR&FE | CON | W.F.P1 |
| CO-SU-FE-WP1-EL-290 |  | IR Intrusion Detection System Quad Beams | 4d | 2027-03-14 | 2027-03-17 | CO-SU-FE-WP1-EL-360, CO-SU-FE-WP1-EL-370, CO-SU-FE-WP1-EL-390, CO-SU-FE-WP1-EL-250, CO-SU-FE-WP1-AR-190, CO-SU-FE-WP1-AR-200, CO-SU-FE-WP1-AR-180, CO-SU-FE-N-EL-220 |  |  |  |  | -42d | 0d | IR Intrusion Detection System Quad Beams (Tx & Rx) (SL-350 QDM) [16.28]; Unskilled Labor [56 h]; Electrical Technician [112 h] | 114,938.18 | GR&FE | CON | W.F.P1 |
| CO-SU-FE-WP1-EL-380 |  | Install of 38W, 230V, 1PH, 60Hz fence, led linear uplight lighting, IP66 | 4d | 2027-03-14 | 2027-03-17 | CO-SU-FE-WP1-EL-370, CO-SU-FE-WP1-EL-390, CO-SU-FE-WP1-EL-250, CO-SU-FE-WP1-AR-180, CO-SU-FE-WP1-AR-190, CO-SU-FE-WP1-AR-200, CO-SU-FE-N-EL-220 |  |  |  |  | -39d | 0d | 38W, 230V, 1PH, 60Hz fence, led linear uplight lighting, IP66 [36.91]; Unskilled Labor [56 h]; Electrical Technician [112 h] | 16,913.45 | GR&FE | CON | W.F.P1 |
| CO-SU-FE-WP1-EL-270 |  | Install, fixings, testing and commissioning 80W LED | 4d | 2027-03-18 | 2027-03-22 | CO-SU-FE-WP1-EL-290, CO-SU-FE-WP1-EL-380, CO-SU-FE-N-EL-240 |  |  |  |  | -39d | 3d | Supply, Install, fixings, testing and commissioning 80W LED Projector waterproof DJ effect light including c [0.81]; Unskilled Labor [56 h]; Electrical Technician [112 h] | 741.27 | GR&FE | CON | W.F.P1 |

| ID | WBS | Activity | Duration | Start | Finish | Predecessors | Complete | Remaining | Planned start | Planned finish | Total float | Free float | Resources | Cost | 01- Network | 08 Stage | 12 FENCE |
| --- | --- | --- | --- | --- | --- | --- | --- | --- | --- | --- | --- | --- | --- | --- | --- | --- | --- |
|  | 4 | **Architictural work** |  | 2026-09-29 | 2027-03-22 |  |  |  |  |  |  |  |  |  |  |  |  |
| CO-SU-FE-WP1-AR-160 |  | Install Brick Work For Northern Fence | 9d | 2026-09-29 A | 2026-11-01 | CO-SU-FE-WP1-CI-180 FF, CO-SU-FE-WP1-CI-180 SS | 23% | 9d | 2026-11-14 | 2026-11-24 | -16d | 0d | Common brickwork. 300mm thick; vertical straight wall complete with accessories. [2381.28]; Insulated brickwork. with expanded polystyrene 200mm thick; vertical straight wall complete with accessories .; Common brickwork. 150mm thick; vertical straight wall complete with accessories.; Two Layers of Bituminous Coating [10629.6]; 20x20 Approved Polysulfide Joint Sealant [112.62]; Unskilled Labor [80 h]; Skilled Labor [160 h] | 317,018.18 | GR&FE | CON | W.F.P1 |
| CO-SU-FE-WP1-AR-170 |  | External plastering to walls and columns | 6d | 2027-02-07 | 2027-02-15 | CO-SU-FE-WP1-AR-160, CO-SU-FE-WP1-CI-190, CO-SU-FE-WP1-EL-390, CO-SU-FE-WP1-EL-370, CO-SU-FE-WP1-EL-360 |  |  |  |  | -42d | 0d | Unskilled Labor [56 h]; Skilled Labor [112 h] |  | GR&FE | CON | W.F.P1 |
| CO-SU-FE-WP1-AR-180 |  | Install 50mm thick random cut stone cladding | 5d | 2027-02-15 | 2027-02-22 | CO-SU-FE-WP1-AR-170 |  |  |  |  | -42d | 0d | Supply and install 33mm thick Lexan cladding blue complete with necessary framings [302.57]; Supply and install 50mm thick random cut stone cladding complete with 600m [900]; Supply and install External plastering to walls and columns min. 15mm thick with cement mortar of specified grade including [4549.53]; Unskilled Labor [56 h]; Skilled Labor [112 h] | 397,484.95 | GR&FE | CON | W.F.P1 |
| CO-SU-FE-WP1-AR-190 |  | Install 2 coats of weatherproof paint at walls | 6d | 2027-02-23 | 2027-03-03 | CO-SU-FE-WP1-AR-180 |  |  |  |  | -42d | 0d | Supply and install 2 coats of weatherproof paint at walls including one prime coat and [4549.53]; Unskilled Labor [48 h]; Skilled Labor [96 h] | 128,023.64 | GR&FE | CON | W.F.P1 |
| CO-SU-FE-WP1-AR-200 |  | Install Stone coping 500mm,525mm | 4d | 2027-03-04 | 2027-03-13 | CO-SU-FE-WP1-AR-190 |  |  |  |  | -42d | 0d | Guard room coping 350mm [15.47]; Guard room coping 450mm [7.33]; Stone coping 500mm [693.35]; Stone coping 525mm [332.16]; Unskilled Labor [32 h]; Skilled Labor [64 h] | 148,059.27 | GR&FE | CON | W.F.P1 |
| CO-SU-FE-WP1-AR-210 |  | Install MODON Signage | 8d | 2027-03-14 | 2027-03-22 | CO-SU-FE-WP1-AR-200, CO-SU-FE-N-AR-150 |  |  |  |  | -39d | 0d | Supply and install MODON Signage with Logo Type 1 [6.51]; Supply and install MODON Signage Type 2 [6.51]; Supply and install "Triangle Style" signage [14.93]; Unskilled Labor [48 h]; Skilled Labor [96 h] | 128,727.27 | GR&FE | CON | W.F.P1 |
|  | 3 | **Western Fence P2 ( W07:W12 )** |  | 2026-08-02 | 2027-04-03 |  |  |  |  |  |  |  |  |  |  |  |  |
|  | 1 | **Civil Work** |  | 2026-08-02 | 2026-11-29 |  |  |  |  |  |  |  |  |  |  |  |  |
| CO-SU-FE-WP2-CI-200 |  | Excavation Work For Northern Fence | 5d | 2026-08-02 A | 2026-09-01 A | CO-SU-FE-WP1-CI-170 SS | 100% |  | 2026-09-16 | 2026-09-22 |  |  | Unskilled Labor [80 h]; Excavator [40 h]; Skilled Labor [40 h] |  | GR&FE | CON | W.F.P2 |
| CO-SU-FE-WP2-CI-210 |  | Pouring for Plain Concrete Northern Fence | 5d | 2026-08-02 A | 2026-10-19 | CO-SU-FE-WP2-CI-200 | 95% | 5d | 2026-09-22 | 2026-09-29 | 2d | 0d | 100 mm thickness lean concrete under the foundation [379.92]; Unskilled Labor [160 h]; Carpenter [80 h]; Steel Fixer [80 h] | 106,909.09 | GR&FE | CON | W.F.P2 |
| CO-SU-FE-WP2-CI-220 |  | Pouring R.C Footing For Northern Fence | 7d | 2026-08-02 A | 2026-10-21 | CO-SU-FE-WP2-CI-210 SS | 85% | 7d | 2026-09-29 | 2026-10-07 | 2d | 0d | Foundation [1970.15]; Slab on Grade; Unskilled Labor [320 h]; Carpenter [160 h]; Steel Fixer [160 h] | 1,188,000 | GR&FE | CON | W.F.P2 |
| CO-SU-FE-WP2-CI-230 |  | Pouring R.C Columns For Northern Fence | 9d | 2026-09-19 A | 2026-10-24 | CO-SU-FE-WP2-CI-220 FF, CO-SU-FE-WP2-CI-220 SS | 30% | 9d | 2026-10-19 | 2026-10-29 | 2d | 0d | Walls [531.89]; Columns [99.05]; Unskilled Labor [288 h]; Carpenter [144 h]; Steel Fixer [144 h] | 567,174.83 | GR&FE | CON | W.F.P2 |
| CO-SU-FE-WP2-CI-240 |  | Pouring Beams For Northern Fence | 7d | 2026-11-22 | 2026-11-29 | CO-SU-FE-WP2-CI-230, CO-SU-FE-WP2-AR-220, CO-SU-FE-WP1-CI-190 |  |  |  |  | 2d | 0d | Beams [72.73]; Unskilled Labor [224 h]; Carpenter [112 h]; Steel Fixer [112 h] | 81,861.82 | GR&FE | CON | W.F.P2 |
|  | 5 | **Finishing Work** |  | 2026-09-29 | 2027-04-03 |  |  |  |  |  |  |  |  |  |  |  |  |
|  | 3 | **Electrical Work** |  | 2026-10-25 | 2027-04-03 |  |  |  |  |  |  |  |  |  |  |  |  |
| CO-SU-FE-WP2-EL-410 |  | Trench excavation to receive 2 nos 50mm diameter PVC Conduit | 4d | 2026-10-25 | 2026-10-28 | CO-SU-FE-WP2-AR-220 |  |  |  |  | 2d | 0d | Trench excavation to receive 2 nos 50mm diameter PVC Conduit, sand bedding and embedded with sa [951.15]; Unskilled Labor [32 h]; Electrical Technician [64 h] | 35,687.27 | GR&FE | CON | W.F.P2 |
| CO-SU-FE-WP2-EL-470 |  | Trench excavation to receive 3 nos 50mm diameter PVC Conduit | 6d | 2026-10-25 | 2026-10-31 | CO-SU-FE-WP2-EL-410 SS |  |  |  |  | 2d | 0d | 800mm depth minimum Trench excavation to receive 3 nos 50mm diameter PVC Conduit with spacer, sand bedding an [407.06]; Unskilled Labor [48 h]; Electrical Technician [96 h] | 16,363.64 | GR&FE | CON | W.F.P2 |
| CO-SU-FE-WP2-EL-450 |  | Fixing of Control cable,CAT6A cable | 7d | 2026-11-01 | 2026-11-08 | CO-SU-FE-WP2-EL-410, CO-SU-FE-WP2-EL-470 |  |  |  |  | 2d | 0d | Control cable [843.96]; CAT6A cable [843.96]; Unskilled Labor [56 h]; Electrical Technician [112 h] | 8,481.82 | GR&FE | CON | W.F.P2 |
| CO-SU-FE-WP2-EL-460 |  | Install 800mm x 800mm x 800mm height concrete handhole | 6.8d | 2026-11-01 | 2026-11-08 | CO-SU-FE-WP2-EL-410, CO-SU-FE-WP2-EL-470, CO-SU-FE-WP2-EL-410 FF |  |  |  |  | 2.2d | 0.2d | Supply and install 800mm x 800mm x 800mm height concrete handhole with bituminous paint all aroun [5.16]; Unskilled Labor [56 h]; Electrical Technician [112 h] | 8,871.27 | GR&FE | CON | W.F.P2 |
| CO-SU-FE-WP2-EL-480 |  | Hot dipped galvanized cable conduits for CAT6A cable and Control Cables embedded to wall | 6d | 2026-11-01 | 2026-11-07 | CO-SU-FE-WP2-EL-410, CO-SU-FE-WP2-EL-470 |  |  |  |  | 3d | 1d | Hot dipped galvanized cable conduits for CAT6A cable and Control Cables embedded to wall [113.98]; 400V, 3PH, 60Hz lighting control panel (LCP-02) [0.27]; Unskilled Labor [56 h]; Electrical Technician [112 h] | 11,534.73 | GR&FE | CON | W.F.P2 |
| CO-SU-FE-WP2-EL-430 |  | Fixing Earthing Work (Earth Pit,Grounding rod,Tinned Copper wire) | 6d | 2026-11-09 | 2026-11-15 | CO-SU-FE-WP2-EL-450, CO-SU-FE-WP2-EL-460, CO-SU-FE-WP2-EL-480 |  |  |  |  | 2d | 0d | Earth Pit [4.61]; Grounding rod 20mmX3m [2.44]; Grounding rod with Pit 20mmX3m [1.09]; Earthing Bar [0.81]; 120mm2 Tinned copper wire [54.27]; Unskilled Labor [48 h]; Electrical Technician [96 h] | 5,217.64 | GR&FE | CON | W.F.P2 |
| CO-SU-FE-WP2-EL-490 |  | Field Equipment Cabinet enclosed outdoor complete with precast concrete footing, | 4d | 2026-11-16 | 2026-11-19 | CO-SU-FE-WP2-EL-430, CO-SU-FE-WP2-EL-460 |  |  |  |  | 2d | 0d | Field Equipment Cabinet enclosed outdoor complete with precast concrete footing, suitable for parame [5.16]; Unskilled Labor [32 h]; Electrical Technician [64 h] | 31,892.36 | GR&FE | CON | W.F.P2 |
| CO-SU-FE-WP2-EL-510 |  | Install of direct buried armored cable 4C-16mm2 ,10mm2 | 7.5d | 2026-11-21 | 2026-11-29 | CO-SU-FE-WP2-EL-490, CO-SU-FE-WP2-EL-430, CO-SU-FE-WP2-EL-450, CO-SU-FE-WP2-EL-460 |  |  |  |  | 2.5d | 0d | 4C-16mm2 CU/XLPE/PVC direct buried armored cable [352.78]; 4C-10mm2 CU/XLPE/PVC direct buried armored cable [230.66]; Unskilled Labor [56 h]; Electrical Technician [112 h] | 22,290.91 | GR&FE | CON | W.F.P2 |
| CO-SU-FE-WP2-EL-520 |  | Install 16mm2,10mm2 CU/PVC wire | 7.5d | 2026-11-21 | 2026-11-29 | CO-SU-FE-WP2-EL-490, CO-SU-FE-WP2-EL-430, CO-SU-FE-WP2-EL-450 |  |  |  |  | 2.5d | 0d | 16mm2 CU/PVC wire [352.78]; 10mm2 CU/PVC wire [230.66]; Unskilled Labor [56 h]; Electrical Technician [112 h] | 3,990.91 | GR&FE | CON | W.F.P2 |
| CO-SU-FE-WP2-EL-540 |  | FEC-CCTV ( 4C-16mm2 CU/XLPE/PVC direct buried armored cable,16mm2 CU/PVC wire | 8d | 2026-11-21 | 2026-11-29 | CO-SU-FE-WP2-EL-490, CO-SU-FE-WP2-EL-430, CO-SU-FE-WP2-EL-450 |  |  |  |  | 2d | 0d | 4C-16mm2 CU/XLPE/PVC direct buried armored cable [1107.19]; 16mm2 CU/PVC wire [1107.19]; Unskilled Labor [64 h]; Electrical Technician [128 h] | 51,927.27 | GR&FE | CON | W.F.P2 |
| CO-SU-FE-WP2-EL-400 |  | Junction Box for lighting fixture | 3d | 2026-11-29 | 2026-12-02 | CO-SU-FE-WP2-EL-510, CO-SU-FE-WP2-EL-520 |  |  |  |  | 16.5d | 4.5d | Junction Box for lighting fixture [36.91]; Unskilled Labor [24 h]; Electrical Technician [48 h] | 3,041.45 | GR&FE | CON | W.F.P2 |
| CO-SU-FE-WP2-EL-440 |  | IR Intrusion Detection System Quad Beams | 7d | 2027-03-18 | 2027-03-25 | CO-SU-FE-WP2-EL-510, CO-SU-FE-WP2-EL-520, CO-SU-FE-WP2-EL-540, CO-SU-FE-WP2-EL-400, CO-SU-FE-WP2-AR-250, CO-SU-FE-WP2-AR-260, CO-SU-FE-WP2-AR-240, CO-SU-FE-WP1-EL-290 |  |  |  |  | -42d | 0d | IR Intrusion Detection System Quad Beams (Tx & Rx) (SL-350 QDM) [16.28]; Unskilled Labor [56 h]; Electrical Technician [112 h] | 114,938.18 | GR&FE | CON | W.F.P2 |
| CO-SU-FE-WP2-EL-530 |  | Install of 38W, 230V, 1PH, 60Hz fence, led linear uplight lighting, IP66 | 7d | 2027-03-18 | 2027-03-25 | CO-SU-FE-WP2-EL-520, CO-SU-FE-WP2-EL-540, CO-SU-FE-WP2-EL-400, CO-SU-FE-WP2-AR-240, CO-SU-FE-WP2-AR-250, CO-SU-FE-WP2-AR-260, CO-SU-FE-WP1-EL-290 |  |  |  |  | -42d | 0d | 38W, 230V, 1PH, 60Hz fence, led linear uplight lighting, IP66 [36.91]; Unskilled Labor [56 h]; Electrical Technician [112 h] | 16,913.45 | GR&FE | CON | W.F.P2 |
| CO-SU-FE-WP2-EL-420 |  | Install, fixings, testing and commissioning 80W LED | 7d | 2027-03-27 | 2027-04-03 | CO-SU-FE-WP2-EL-440, CO-SU-FE-WP2-EL-530, CO-SU-FE-WP1-EL-270 |  |  |  |  | -42d | 0d | Supply, Install, fixings, testing and commissioning 80W LED Projector waterproof DJ effect light including c [0.81]; Unskilled Labor [56 h]; Electrical Technician [112 h] | 741.27 | GR&FE | CON | W.F.P2 |

| ID | WBS | Activity | Duration | Start | Finish | Predecessors | Complete | Remaining | Planned start | Planned finish | Total float | Free float | Resources | Cost | 01- Network | 08 Stage | 12 FENCE |
| --- | --- | --- | --- | --- | --- | --- | --- | --- | --- | --- | --- | --- | --- | --- | --- | --- | --- |
|  | 4 | **Architictural work** |  | 2026-09-29 | 2027-03-31 |  |  |  |  |  |  |  |  |  |  |  |  |
| CO-SU-FE-WP2-AR-220 |  | Install Brick Work For Northern Fence | 8d | 2026-09-29 A | 2026-10-24 | CO-SU-FE-WP2-CI-230 FF, CO-SU-FE-WP2-CI-230 SS | 23% | 8d | 2026-11-04 | 2026-11-14 | 2d | 0d | Common brickwork. 300mm thick; vertical straight wall complete with accessories. [2381.28]; Insulated brickwork. with expanded polystyrene 200mm thick; vertical straight wall complete with accessories .; Common brickwork. 150mm thick; vertical straight wall complete with accessories.; Two Layers of Bituminous Coating [10629.6]; 20x20 Approved Polysulfide Joint Sealant [112.62]; Unskilled Labor [160 h]; Skilled Labor [320 h] | 317,018.18 | GR&FE | CON | W.F.P2 |
| CO-SU-FE-WP2-AR-230 |  | External plastering to walls and columns | 8d | 2026-11-30 | 2026-12-08 | CO-SU-FE-WP2-AR-220, CO-SU-FE-WP2-CI-240, CO-SU-FE-WP2-EL-540, CO-SU-FE-WP2-EL-520, CO-SU-FE-WP2-EL-510 |  |  |  |  | 2d | 0d | Unskilled Labor [120 h]; Skilled Labor [240 h] |  | GR&FE | CON | W.F.P2 |
| CO-SU-FE-WP2-AR-240 |  | Install 50mm thick random cut stone cladding | 8d | 2026-12-09 | 2026-12-17 | CO-SU-FE-WP2-AR-230 |  |  |  |  | 2d | 0d | Supply and install 33mm thick Lexan cladding blue complete with necessary framings [302.57]; Supply and install 50mm thick random cut stone cladding complete with 600m [5377.61]; Supply and install External plastering to walls and columns min. 15mm thick with cement mortar of specified grade including [4549.53]; Unskilled Labor [120 h]; Skilled Labor [240 h] | 1,405,484.95 | GR&FE | CON | W.F.P2 |
| CO-SU-FE-WP2-AR-250 |  | Install 2 coats of weatherproof paint at walls | 8d | 2026-12-19 | 2026-12-27 | CO-SU-FE-WP2-AR-240 |  |  |  |  | 2d | 0d | Supply and install 2 coats of weatherproof paint at walls including one prime coat and [4549.53]; Unskilled Labor [80 h]; Skilled Labor [160 h] | 128,023.64 | GR&FE | CON | W.F.P2 |
| CO-SU-FE-WP2-AR-260 |  | Install Stone coping 500mm,525mm | 8d | 2026-12-28 | 2027-01-05 | CO-SU-FE-WP2-AR-250 |  |  |  |  | 2d | 0d | Guard room coping 350mm [15.47]; Guard room coping 450mm [7.33]; Stone coping 500mm [693.35]; Stone coping 525mm [332.16]; Unskilled Labor [80 h]; Skilled Labor [160 h] | 148,059.27 | GR&FE | CON | W.F.P2 |
| CO-SU-FE-WP2-AR-270 |  | Install MODON Signage | 8d | 2027-03-23 | 2027-03-31 | CO-SU-FE-WP2-AR-260, CO-SU-FE-WP1-AR-210 |  |  |  |  | -39d | 0d | Supply and install MODON Signage with Logo Type 1 [6.51]; Supply and install MODON Signage Type 2 [6.51]; Supply and install "Triangle Style" signage [14.93]; Unskilled Labor [48 h]; Skilled Labor [96 h] | 128,727.27 | GR&FE | CON | W.F.P2 |
|  | 4 | **Southern Fence S01:S05** |  | 2026-08-01 | 2027-04-11 |  |  |  |  |  |  |  |  |  |  |  |  |
|  | 1 | **Civil Work** |  | 2026-08-01 | 2026-11-05 |  |  |  |  |  |  |  |  |  |  |  |  |
| CO-SU-FE-S-CI-250 |  | Excavation Work For Northern Fence | 7d | 2026-08-01 A | 2026-08-09 A | ENG-SH-GR-A-200_R, CO-EW-110_R SS, PRO-FE-CV-DL-80 SS, CO-SU-FE-N-CI-100 | 100% |  |  |  |  |  | Unskilled Labor [112 h]; Excavator [56 h]; Skilled Labor [56 h] |  | GR&FE | CON | S.F |
| CO-SU-FE-S-CI-260 |  | Pouring for Plain Concrete Northern Fence | 3d | 2026-08-02 A | 2026-10-08 | CO-SU-FE-S-CI-250 | 95% | 3d | 2026-08-09 | 2026-08-12 | 11d | 0d | 100 mm thickness lean concrete under the foundation [316.6]; Unskilled Labor [96 h]; Carpenter [48 h]; Steel Fixer [48 h] | 89,090.91 | GR&FE | CON | S.F |
| CO-SU-FE-S-CI-270 |  | Pouring R.C Footing For Northern Fence | 8d | 2026-08-02 A | 2026-10-14 | CO-SU-FE-S-CI-260 SS | 85% | 8d | 2026-08-12 | 2026-08-22 | 11d | 0d | Foundation [1641.79]; Slab on Grade; Unskilled Labor [320 h]; Carpenter [160 h]; Steel Fixer [160 h] | 990,000 | GR&FE | CON | S.F |
| CO-SU-FE-S-CI-280 |  | Pouring R.C Columns For Northern Fence | 10d | 2026-10-15 | 2026-10-26 | CO-SU-FE-S-CI-270 |  |  |  |  | 11d | 0d | Walls [592.54]; Columns [82.54]; Unskilled Labor [160 h]; Carpenter [80 h]; Steel Fixer [80 h] | 718,865.45 | GR&FE | CON | S.F |
| CO-SU-FE-S-CI-290 |  | Pouring Beams For Northern Fence | 9d | 2026-10-27 | 2026-11-05 | CO-SU-FE-S-CI-280, CO-SU-FE-S-AR-280 SS |  |  |  |  | 20d | 0d | Beams [60.61]; Unskilled Labor [128 h]; Carpenter [64 h]; Steel Fixer [64 h] | 68,218.18 | GR&FE | CON | S.F |
|  | 5 | **Finishing Work** |  | 2026-09-29 | 2027-04-11 |  |  |  |  |  |  |  |  |  |  |  |  |
|  | 3 | **Electrical Work** |  | 2026-10-20 | 2027-04-11 |  |  |  |  |  |  |  |  |  |  |  |  |
| CO-SU-FE-S-EL-560 |  | Trench excavation to receive 2 nos 50mm diameter PVC Conduit | 15d | 2026-10-20 | 2026-11-05 | CO-SU-FE-S-AR-280 SS |  |  |  |  | 11d | 0d | Trench excavation to receive 2 nos 50mm diameter PVC Conduit, sand bedding and embedded with sa [792.63]; Unskilled Labor [32 h]; Electrical Technician [64 h] | 29,739.39 | GR&FE | CON | S.F |
| CO-SU-FE-S-EL-620 |  | Trench excavation to receive 3 nos 50mm diameter PVC Conduit | 15d | 2026-10-20 | 2026-11-05 | CO-SU-FE-S-EL-560 SS |  |  |  |  | 11d | 0d | 800mm depth minimum Trench excavation to receive 3 nos 50mm diameter PVC Conduit with spacer, sand bedding an [339.21]; Unskilled Labor [48 h]; Electrical Technician [96 h] | 13,636.36 | GR&FE | CON | S.F |
| CO-SU-FE-S-EL-600 |  | Fixing of Control cable,CAT6A cable | 15d | 2026-11-07 | 2026-11-23 | CO-SU-FE-S-EL-560, CO-SU-FE-S-EL-620 |  |  |  |  | 11d | 0d | Control cable [703.3]; CAT6A cable [703.3]; Unskilled Labor [56 h]; Electrical Technician [112 h] | 7,068.18 | GR&FE | CON | S.F |
| CO-SU-FE-S-EL-610 |  | Install 800mm x 800mm x 800mm height concrete handhole | 15d | 2026-11-07 | 2026-11-23 | CO-SU-FE-S-EL-560, CO-SU-FE-S-EL-620 |  |  |  |  | 11d | 0d | Supply and install 800mm x 800mm x 800mm height concrete handhole with bituminous paint all aroun [4.3]; Unskilled Labor [56 h]; Electrical Technician [112 h] | 7,392.73 | GR&FE | CON | S.F |
| CO-SU-FE-S-EL-630 |  | Hot dipped galvanized cable conduits for CAT6A cable and Control Cables embedded to wall | 15d | 2026-11-07 | 2026-11-23 | CO-SU-FE-S-EL-560, CO-SU-FE-S-EL-620 |  |  |  |  | 11d | 0d | Hot dipped galvanized cable conduits for CAT6A cable and Control Cables embedded to wall [94.98]; 400V, 3PH, 60Hz lighting control panel (LCP-02) [0.23]; Unskilled Labor [56 h]; Electrical Technician [112 h] | 9,612.27 | GR&FE | CON | S.F |
| CO-SU-FE-S-EL-580 |  | Fixing Earthing Work (Earth Pit,Grounding rod,Tinned Copper wire) | 6d | 2026-11-24 | 2026-11-30 | CO-SU-FE-S-EL-600, CO-SU-FE-S-EL-610, CO-SU-FE-S-EL-630 |  |  |  |  | 11d | 0d | Earth Pit [3.84]; Grounding rod 20mmX3m [2.04]; Grounding rod with Pit 20mmX3m [0.9]; Earthing Bar [0.68]; 120mm2 Tinned copper wire [45.23]; Unskilled Labor [48 h]; Electrical Technician [96 h] | 4,348.03 | GR&FE | CON | S.F |
| CO-SU-FE-S-EL-640 |  | Field Equipment Cabinet enclosed outdoor complete with precast concrete footing, | 4d | 2026-11-26 | 2026-11-30 | CO-SU-FE-S-EL-580 SS, CO-SU-FE-S-EL-580 FF |  |  |  |  | 11d | 0d | Field Equipment Cabinet enclosed outdoor complete with precast concrete footing, suitable for parame [4.3]; Unskilled Labor [32 h]; Electrical Technician [64 h] | 26,576.97 | GR&FE | CON | S.F |
| CO-SU-FE-S-EL-650 |  | Fence Lightining 400V, 3PH, 60Hz lighting control panelï¿½ (LCP-02) | 4d | 2026-11-26 | 2026-11-30 | CO-SU-FE-S-EL-580 SS, CO-SU-FE-S-EL-580 FF |  |  |  |  | 11d | 0d | Unskilled Labor [32 h]; Electrical Technician [64 h] |  | GR&FE | CON | S.F |
| CO-SU-FE-S-EL-660 |  | Install of direct buried armored cable 4C-16mm2 ,10mm2 | 10d | 2026-11-26 | 2026-12-07 | CO-SU-FE-S-EL-640 SS, CO-SU-FE-S-EL-650 SS |  |  |  |  | 12d | 0d | 4C-16mm2 CU/XLPE/PVC direct buried armored cable [293.98]; 4C-10mm2 CU/XLPE/PVC direct buried armored cable [192.22]; Unskilled Labor [56 h]; Electrical Technician [112 h] | 18,575.76 | GR&FE | CON | S.F |
| CO-SU-FE-S-EL-670 |  | Install 16mm2,10mm2 CU/PVC wire | 6d | 2026-12-01 | 2026-12-07 | CO-SU-FE-S-EL-640, CO-SU-FE-S-EL-650 |  |  |  |  | 12d | 0d | 16mm2 CU/PVC wire [293.98]; 10mm2 CU/PVC wire [192.22]; Unskilled Labor [56 h]; Electrical Technician [112 h] | 3,325.76 | GR&FE | CON | S.F |
| CO-SU-FE-S-EL-690 |  | FEC-CCTV ( 4C-16mm2 CU/XLPE/PVC direct buried armored cable,16mm2 CU/PVC wire | 7d | 2026-12-01 | 2026-12-08 | CO-SU-FE-S-EL-640, CO-SU-FE-S-EL-650 |  |  |  |  | 11d | 0d | 4C-16mm2 CU/XLPE/PVC direct buried armored cable [922.66]; 16mm2 CU/PVC wire [922.66]; Unskilled Labor [56 h]; Electrical Technician [112 h] | 43,272.73 | GR&FE | CON | S.F |
| CO-SU-FE-S-EL-550 |  | Junction Box for lighting fixture | 7d | 2026-12-08 | 2026-12-15 | CO-SU-FE-S-EL-660, CO-SU-FE-S-EL-670, CO-SU-FE-WP2-EL-400 |  |  |  |  | 12d | 0d | Junction Box for lighting fixture [30.76]; Unskilled Labor [24 h]; Electrical Technician [48 h] | 2,534.55 | GR&FE | CON | S.F |
| CO-SU-FE-S-EL-590 |  | IR Intrusion Detection System Quad Beams | 7d | 2027-03-06 | 2027-03-17 | CO-SU-FE-S-EL-660, CO-SU-FE-S-EL-670, CO-SU-FE-S-EL-690, CO-SU-FE-S-EL-550, CO-SU-FE-S-AR-310, CO-SU-FE-S-AR-320 SS, CO-SU-FE-S-AR-300 |  |  |  |  | -28d | 0d | IR Intrusion Detection System Quad Beams (Tx & Rx) (SL-350 QDM) [13.57]; Unskilled Labor [56 h]; Electrical Technician [112 h] | 95,781.82 | GR&FE | CON | S.F |
| CO-SU-FE-S-EL-680 |  | Install of 38W, 230V, 1PH, 60Hz fence, led linear uplight lighting, IP66 | 7d | 2027-03-27 | 2027-04-03 | CO-SU-FE-S-EL-670, CO-SU-FE-S-EL-690, CO-SU-FE-S-EL-550, CO-SU-FE-S-AR-300, CO-SU-FE-S-AR-310, CO-SU-FE-S-AR-320, CO-SU-FE-WP2-EL-440 |  |  |  |  | -42d | 0d | 38W, 230V, 1PH, 60Hz fence, led linear uplight lighting, IP66 [30.76]; Unskilled Labor [56 h]; Electrical Technician [112 h] | 14,094.55 | GR&FE | CON | S.F |
| CO-SU-FE-S-EL-570 |  | Install, fixings, testing and commissioning 80W LED | 7d | 2027-04-04 | 2027-04-11 | CO-SU-FE-S-EL-590, CO-SU-FE-S-EL-680, CO-SU-FE-WP2-EL-420 |  |  |  |  | -42d | 0d | Supply, Install, fixings, testing and commissioning 80W LED Projector waterproof DJ effect light including c [0.68]; Unskilled Labor [56 h]; Electrical Technician [112 h] | 617.73 | GR&FE | CON | S.F |

| ID | WBS | Activity | Duration | Start | Finish | Predecessors | Complete | Remaining | Planned start | Planned finish | Total float | Free float | Resources | Cost | 01- Network | 08 Stage | 12 FENCE |
| --- | --- | --- | --- | --- | --- | --- | --- | --- | --- | --- | --- | --- | --- | --- | --- | --- | --- |
|  | 4 | **Architictural work** |  | 2026-09-29 | 2027-04-10 |  |  |  |  |  |  |  |  |  |  |  |  |
| CO-SU-FE-S-AR-280 |  | Install Brick Work For Northern Fence | 6d | 2026-09-29 A | 2026-10-26 | CO-SU-FE-S-CI-280 FF | 23% | 6d | 2026-10-20 | 2026-10-26 | 11d | 0d | Common brickwork. 300mm thick; vertical straight wall complete with accessories. [1984.4]; Insulated brickwork. with expanded polystyrene 200mm thick; vertical straight wall complete with accessories .; Common brickwork. 150mm thick; vertical straight wall complete with accessories.; Two Layers of Bituminous Coating [8857.98]; 20x20 Approved Polysulfide Joint Sealant [93.85]; Unskilled Labor [120 h]; Skilled Labor [240 h] | 264,181.82 | GR&FE | CON | S.F |
| CO-SU-FE-S-AR-290 |  | External plastering to walls and columns | 6d | 2026-12-09 | 2026-12-15 | CO-SU-FE-S-AR-280, CO-SU-FE-S-CI-290, CO-SU-FE-S-EL-690, CO-SU-FE-S-EL-670, CO-SU-FE-S-EL-660 |  |  |  |  | 11d | 0d | Unskilled Labor [112 h]; Skilled Labor [224 h] |  | GR&FE | CON | S.F |
| CO-SU-FE-S-AR-300 |  | Install 50mm thick random cut stone cladding | 6d | 2026-12-16 | 2026-12-22 | CO-SU-FE-S-AR-290 |  |  |  |  | 11d | 49d | Supply and install 33mm thick Lexan cladding blue complete with necessary framings [252.14]; Supply and install 50mm thick random cut stone cladding complete with 600m [3237.31]; Supply and install External plastering to walls and columns min. 15mm thick with cement mortar of specified grade including [3791.27]; Unskilled Labor [112 h]; Skilled Labor [224 h] | 891,181.45 | GR&FE | CON | S.F |
| CO-SU-FE-S-AR-310 |  | Install 2 coats of weatherproof paint at walls | 8d | 2027-02-22 | 2027-03-06 | CO-SU-FE-S-AR-300, CO-SU-FE-WP1-EL-250 |  |  |  |  | -38d | 0d | Supply and install 2 coats of weatherproof paint at walls including one prime coat and [3791.27]; Unskilled Labor [64 h]; Skilled Labor [128 h] | 106,686.36 | GR&FE | CON | S.F |
| CO-SU-FE-S-AR-320 |  | Install Stone coping 500mm,525mm | 10d | 2027-03-06 | 2027-03-21 | CO-SU-FE-S-AR-310 |  |  |  |  | -38d | 0d | Guard room coping 350mm [12.89]; Guard room coping 450mm [6.11]; Stone coping 500mm [577.79]; Stone coping 525mm [276.8]; Unskilled Labor [80 h]; Skilled Labor [160 h] | 123,382.73 | GR&FE | CON | S.F |
| CO-SU-FE-S-AR-330 |  | Install MODON Signage | 8d | 2027-04-01 | 2027-04-10 | CO-SU-FE-S-AR-320, CO-SU-FE-WP2-AR-270, CO-SU-FE-WP2-AR-270 FF, CO-SU-FE-WP2-AR-270 SS |  |  |  |  | -39d | 0d | Supply and install MODON Signage with Logo Type 1 [5.43]; Supply and install MODON Signage Type 2 [5.43]; Supply and install "Triangle Style" signage [12.44]; Unskilled Labor [48 h]; Skilled Labor [96 h] | 107,272.73 | GR&FE | CON | S.F |
|  | 5 | **Eastern Fence P1 ( E01:E06 )** |  | 2026-08-02 | 2027-04-15 |  |  |  |  |  |  |  |  |  |  |  |  |
|  | 1 | **Civil Work** |  | 2026-08-02 | 2026-11-14 |  |  |  |  |  |  |  |  |  |  |  |  |
| CO-SU-FE-EP1-CI-310 |  | Pouring for Plain Concrete Northern Fence | 8d | 2026-08-02 A | 2026-10-14 | CO-SU-FE-EP1-CI-300 | 95% | 8d | 2026-08-26 | 2026-09-05 | 19d | 0d | 100 mm thickness lean concrete under the foundation [379.92]; Unskilled Labor [160 h]; Carpenter [80 h]; Steel Fixer [80 h] | 106,909.09 | GR&FE | CON | E.F.P1 |
| CO-SU-FE-EP1-CI-320 |  | Pouring R.C Footing For Northern Fence | 12d | 2026-08-02 A | 2026-10-19 | CO-SU-FE-EP1-CI-310 SS | 85% | 12d | 2026-09-05 | 2026-09-19 | 19d | 0d | Foundation [1970.15]; Slab on Grade; Unskilled Labor [480 h]; Carpenter [240 h]; Steel Fixer [240 h] | 1,188,000 | GR&FE | CON | E.F.P1 |
| CO-SU-FE-EP1-CI-300 |  | Excavation Work For Northern Fence | 12d | 2026-08-12 A | 2026-08-26 A | CO-SU-FE-S-CI-270 SS | 100% |  |  |  |  |  | Unskilled Labor [160 h]; Excavator [80 h]; Skilled Labor [80 h] |  | GR&FE | CON | E.F.P1 |
| CO-SU-FE-EP1-CI-330 |  | Pouring R.C Columns For Northern Fence | 15d | 2026-10-20 | 2026-11-05 | CO-SU-FE-EP1-CI-320 |  |  |  |  | 19d | 0d | Walls [382.09]; Columns [99.05]; Unskilled Labor [384 h]; Carpenter [192 h]; Steel Fixer [192 h] | 518,814.55 | GR&FE | CON | E.F.P1 |
| CO-SU-FE-EP1-CI-340 |  | Pouring Beams For Northern Fence | 7d | 2026-11-07 | 2026-11-14 | CO-SU-FE-EP1-CI-330, CO-SU-FE-EP1-AR-340, CO-SU-FE-S-CI-290 |  |  |  |  | 20d | 1d | Beams [72.73]; Unskilled Labor [224 h]; Carpenter [112 h]; Steel Fixer [112 h] | 81,861.82 | GR&FE | CON | E.F.P1 |
|  | 5 | **Finishing Work** |  | 2026-09-29 | 2027-04-15 |  |  |  |  |  |  |  |  |  |  |  |  |
|  | 3 | **Electrical Work** |  | 2026-11-07 | 2027-04-15 |  |  |  |  |  |  |  |  |  |  |  |  |
| CO-SU-FE-EP1-EL-710 |  | Trench excavation to receive 2 nos 50mm diameter PVC Conduit | 4d | 2026-11-07 | 2026-11-10 | CO-SU-FE-EP1-AR-340 |  |  |  |  | 19d | 0d | Trench excavation to receive 2 nos 50mm diameter PVC Conduit, sand bedding and embedded with sa [951.15]; Unskilled Labor [32 h]; Electrical Technician [64 h] | 35,687.27 | GR&FE | CON | E.F.P1 |
| CO-SU-FE-EP1-EL-770 |  | Trench excavation to receive 3 nos 50mm diameter PVC Conduit | 4d | 2026-11-07 | 2026-11-10 | CO-SU-FE-EP1-EL-710 SS |  |  |  |  | 19d | 0d | 800mm depth minimum Trench excavation to receive 3 nos 50mm diameter PVC Conduit with spacer, sand bedding an [407.06]; Unskilled Labor [48 h]; Electrical Technician [96 h] | 16,363.64 | GR&FE | CON | E.F.P1 |
| CO-SU-FE-EP1-EL-750 |  | Fixing of Control cable,CAT6A cable | 4d | 2026-11-11 | 2026-11-15 | CO-SU-FE-EP1-EL-710, CO-SU-FE-EP1-EL-770 |  |  |  |  | 19d | 0d | Control cable [843.96]; CAT6A cable [843.96]; Unskilled Labor [56 h]; Electrical Technician [112 h] | 8,481.82 | GR&FE | CON | E.F.P1 |
| CO-SU-FE-EP1-EL-760 |  | Install 800mm x 800mm x 800mm height concrete handhole | 4d | 2026-11-11 | 2026-11-15 | CO-SU-FE-EP1-EL-710, CO-SU-FE-EP1-EL-770 |  |  |  |  | 19d | 0d | Supply and install 800mm x 800mm x 800mm height concrete handhole with bituminous paint all aroun [5.16]; Unskilled Labor [56 h]; Electrical Technician [112 h] | 8,871.27 | GR&FE | CON | E.F.P1 |
| CO-SU-FE-EP1-EL-780 |  | Hot dipped galvanized cable conduits for CAT6A cable and Control Cables embedded to wall | 4d | 2026-11-11 | 2026-11-15 | CO-SU-FE-EP1-EL-710, CO-SU-FE-EP1-EL-770 |  |  |  |  | 19d | 0d | Hot dipped galvanized cable conduits for CAT6A cable and Control Cables embedded to wall [113.98]; 400V, 3PH, 60Hz lighting control panel (LCP-02) [0.27]; Unskilled Labor [56 h]; Electrical Technician [112 h] | 11,534.73 | GR&FE | CON | E.F.P1 |
| CO-SU-FE-EP1-EL-730 |  | Fixing Earthing Work (Earth Pit,Grounding rod,Tinned Copper wire) | 6d | 2026-11-16 | 2026-11-22 | CO-SU-FE-EP1-EL-750, CO-SU-FE-EP1-EL-760, CO-SU-FE-EP1-EL-780, CO-SU-FE-EP1-CI-340 |  |  |  |  | 19d | 0d | Earth Pit [4.61]; Grounding rod 20mmX3m [2.44]; Grounding rod with Pit 20mmX3m [1.09]; Earthing Bar [0.81]; 120mm2 Tinned copper wire [54.27]; Unskilled Labor [48 h]; Electrical Technician [96 h] | 5,217.64 | GR&FE | CON | E.F.P1 |
| CO-SU-FE-EP1-EL-790 |  | Field Equipment Cabinet enclosed outdoor complete with precast concrete footing, | 4d | 2026-11-23 | 2026-11-26 | CO-SU-FE-EP1-EL-730 |  |  |  |  | 19d | 0d | Field Equipment Cabinet enclosed outdoor complete with precast concrete footing, suitable for parame [5.16]; Unskilled Labor [32 h]; Electrical Technician [64 h] | 31,892.36 | GR&FE | CON | E.F.P1 |
| CO-SU-FE-EP1-EL-800 |  | Fence Lightining 400V, 3PH, 60Hz lighting control panelï¿½ (LCP-02) | 4d | 2026-11-23 | 2026-11-26 | CO-SU-FE-EP1-EL-730 |  |  |  |  | 19d | 0d | Unskilled Labor [32 h]; Electrical Technician [64 h] |  | GR&FE | CON | E.F.P1 |
| CO-SU-FE-EP1-EL-810 |  | Install of direct buried armored cable 4C-16mm2 ,10mm2 | 4d | 2026-11-28 | 2026-12-01 | CO-SU-FE-EP1-EL-790, CO-SU-FE-EP1-EL-800 |  |  |  |  | 19d | 0d | 4C-16mm2 CU/XLPE/PVC direct buried armored cable [352.78]; 4C-10mm2 CU/XLPE/PVC direct buried armored cable [230.66]; Unskilled Labor [56 h]; Electrical Technician [112 h] | 22,290.91 | GR&FE | CON | E.F.P1 |
| CO-SU-FE-EP1-EL-820 |  | Install 16mm2,10mm2 CU/PVC wire | 4d | 2026-11-28 | 2026-12-01 | CO-SU-FE-EP1-EL-790, CO-SU-FE-EP1-EL-800 |  |  |  |  | 19d | 0d | 16mm2 CU/PVC wire [352.78]; 10mm2 CU/PVC wire [230.66]; Unskilled Labor [56 h]; Electrical Technician [112 h] | 3,990.91 | GR&FE | CON | E.F.P1 |
| CO-SU-FE-EP1-EL-840 |  | FEC-CCTV ( 4C-16mm2 CU/XLPE/PVC direct buried armored cable,16mm2 CU/PVC wire | 4d | 2026-11-28 | 2026-12-01 | CO-SU-FE-EP1-EL-790, CO-SU-FE-EP1-EL-800 |  |  |  |  | 19d | 0d | 4C-16mm2 CU/XLPE/PVC direct buried armored cable [1107.19]; 16mm2 CU/PVC wire [1107.19]; Unskilled Labor [56 h]; Electrical Technician [112 h] | 51,927.27 | GR&FE | CON | E.F.P1 |
| CO-SU-FE-EP1-EL-700 |  | Junction Box for lighting fixture | 3d | 2026-12-16 | 2026-12-19 | CO-SU-FE-EP1-EL-810, CO-SU-FE-EP1-EL-820, CO-SU-FE-S-EL-550 |  |  |  |  | 12d | 0d | Junction Box for lighting fixture [36.91]; Unskilled Labor [24 h]; Electrical Technician [48 h] | 3,041.45 | GR&FE | CON | E.F.P1 |
| CO-SU-FE-EP1-EL-740 |  | IR Intrusion Detection System Quad Beams | 4d | 2027-03-18 | 2027-03-22 | CO-SU-FE-EP1-EL-810, CO-SU-FE-EP1-EL-820, CO-SU-FE-EP1-EL-840, CO-SU-FE-EP1-EL-700, CO-SU-FE-EP1-AR-370, CO-SU-FE-EP1-AR-380, CO-SU-FE-EP1-AR-360, CO-SU-FE-S-EL-590 |  |  |  |  | -25d | 17d | IR Intrusion Detection System Quad Beams (Tx & Rx) (SL-350 QDM) [16.28]; Unskilled Labor [56 h]; Electrical Technician [112 h] | 114,938.18 | GR&FE | CON | E.F.P1 |
| CO-SU-FE-EP1-EL-830 |  | Install of 38W, 230V, 1PH, 60Hz fence, led linear uplight lighting, IP66 | 4d | 2027-03-18 | 2027-03-22 | CO-SU-FE-EP1-EL-820, CO-SU-FE-EP1-EL-840, CO-SU-FE-EP1-EL-700, CO-SU-FE-EP1-AR-360, CO-SU-FE-EP1-AR-370, CO-SU-FE-EP1-AR-380, CO-SU-FE-S-EL-590 |  |  |  |  | -25d | 17d | 38W, 230V, 1PH, 60Hz fence, led linear uplight lighting, IP66 [36.91]; Unskilled Labor [56 h]; Electrical Technician [112 h] | 16,913.45 | GR&FE | CON | E.F.P1 |
| CO-SU-FE-EP1-EL-720 |  | Install, fixings, testing and commissioning 80W LED | 4d | 2027-04-12 | 2027-04-15 | CO-SU-FE-EP1-EL-740, CO-SU-FE-EP1-EL-830, CO-SU-FE-S-EL-570 |  |  |  |  | -42d | 11.5d | Supply, Install, fixings, testing and commissioning 80W LED Projector waterproof DJ effect light including c [0.81]; Unskilled Labor [56 h]; Electrical Technician [112 h] | 741.27 | GR&FE | CON | E.F.P1 |

| ID | WBS | Activity | Duration | Start | Finish | Predecessors | Complete | Remaining | Planned start | Planned finish | Total float | Free float | Resources | Cost | 01- Network | 08 Stage | 12 FENCE |
| --- | --- | --- | --- | --- | --- | --- | --- | --- | --- | --- | --- | --- | --- | --- | --- | --- | --- |
|  | 4 | **Architictural work** |  | 2026-09-29 | 2027-04-13 |  |  |  |  |  |  |  |  |  |  |  |  |
| CO-SU-FE-EP1-AR-340 |  | Install Brick Work For Northern Fence | 8d | 2026-09-29 A | 2026-11-05 | CO-SU-FE-EP1-CI-330 FF | 23% | 8d | 2026-10-31 | 2026-11-08 | 19d | 0d | Common brickwork. 300mm thick; vertical straight wall complete with accessories. [2381.28]; Insulated brickwork. with expanded polystyrene 200mm thick; vertical straight wall complete with accessories .; Common brickwork. 150mm thick; vertical straight wall complete with accessories.; Two Layers of Bituminous Coating [10629.6]; 20x20 Approved Polysulfide Joint Sealant [112.62]; Unskilled Labor [80 h]; Skilled Labor [160 h] | 317,018.18 | GR&FE | CON | E.F.P1 |
| CO-SU-FE-EP1-AR-350 |  | External plastering to walls and columns | 8d | 2026-12-02 | 2026-12-10 | CO-SU-FE-EP1-AR-340, CO-SU-FE-EP1-CI-340, CO-SU-FE-EP1-EL-840, CO-SU-FE-EP1-EL-820, CO-SU-FE-EP1-EL-810 |  |  |  |  | 19d | 0d | Unskilled Labor [56 h]; Skilled Labor [112 h] |  | GR&FE | CON | E.F.P1 |
| CO-SU-FE-EP1-AR-360 |  | Install 50mm thick random cut stone cladding | 10d | 2026-12-12 | 2026-12-22 | CO-SU-FE-EP1-AR-350, CO-SU-FE-EP1-EL-840 |  |  |  |  | 19d | 0d | Supply and install 33mm thick Lexan cladding blue complete with necessary framings [302.57]; Supply and install 50mm thick random cut stone cladding complete with 600m [1646.27]; Supply and install External plastering to walls and columns min. 15mm thick with cement mortar of specified grade including [4549.53]; Unskilled Labor [56 h]; Skilled Labor [112 h] | 565,484.95 | GR&FE | CON | E.F.P1 |
| CO-SU-FE-EP1-AR-370 |  | Install 2 coats of weatherproof paint at walls | 10d | 2026-12-23 | 2027-01-03 | CO-SU-FE-EP1-AR-360 |  |  |  |  | 19d | 0d | Supply and install 2 coats of weatherproof paint at walls including one prime coat and [4549.53]; Unskilled Labor [48 h]; Skilled Labor [96 h] | 128,023.64 | GR&FE | CON | E.F.P1 |
| CO-SU-FE-EP1-AR-380 |  | Install Stone coping 500mm,525mm | 10d | 2027-01-04 | 2027-01-14 | CO-SU-FE-EP1-AR-370 |  |  |  |  | 19d | 44d | Guard room coping 350mm [15.47]; Guard room coping 450mm [7.33]; Stone coping 500mm [693.35]; Stone coping 525mm [332.16]; Unskilled Labor [32 h]; Skilled Labor [64 h] | 148,059.27 | GR&FE | CON | E.F.P1 |
| CO-SU-FE-EP1-AR-390 |  | Install MODON Signage | 3d | 2027-04-11 | 2027-04-13 | CO-SU-FE-EP1-AR-380, CO-SU-FE-S-AR-330 |  |  |  |  | -39d | 10.5d | Supply and install MODON Signage with Logo Type 1 [6.51]; Supply and install MODON Signage Type 2 [6.51]; Supply and install "Triangle Style" signage [14.93]; Unskilled Labor [48 h]; Skilled Labor [96 h] | 128,727.27 | GR&FE | CON | E.F.P1 |
|  | 6 | **Eastern Fence P2 ( E07:E13 )** |  | 2026-08-02 | 2027-05-03 |  |  |  |  |  |  |  |  |  |  |  |  |
|  | 1 | **Civil Work** |  | 2026-08-02 | 2026-12-13 |  |  |  |  |  |  |  |  |  |  |  |  |
| CO-SU-FE-EP2-CI-350 |  | Excavation Work For Northern Fence | 12d | 2026-08-02 A | 2026-09-01 A | CO-SU-FE-EP1-CI-320 SS | 100% |  | 2026-09-19 | 2026-10-04 |  |  | Unskilled Labor [160 h]; Excavator [80 h]; Skilled Labor [80 h] |  | GR&FE | CON | E.F.P2 |
| CO-SU-FE-EP2-CI-360 |  | Pouring for Plain Concrete Northern Fence | 12d | 2026-08-02 A | 2026-11-05 | CO-SU-FE-EP2-CI-350, CO-SU-FE-S-CI-290 FF | 95% | 12d | 2026-10-04 | 2026-10-18 | 45d | 0d | 100 mm thickness lean concrete under the foundation [443.24]; Unskilled Labor [160 h]; Carpenter [80 h]; Steel Fixer [80 h] | 124,727.27 | GR&FE | CON | E.F.P2 |
| CO-SU-FE-EP2-CI-370 |  | Pouring R.C Footing For Northern Fence | 12d | 2026-08-02 A | 2026-11-05 | CO-SU-FE-EP2-CI-360 SS | 85% | 12d | 2026-10-18 | 2026-11-01 | 45d | 0d | Foundation [805.97]; Slab on Grade; Unskilled Labor [480 h]; Carpenter [240 h]; Steel Fixer [240 h] | 486,000 | GR&FE | CON | E.F.P2 |
| CO-SU-FE-EP2-CI-380 |  | Pouring R.C Columns For Northern Fence | 10d | 2026-09-15 A | 2026-11-05 | CO-SU-FE-EP2-CI-370 FF, CO-SU-FE-EP2-CI-370 SS, CO-SU-FE-EP1-CI-330 FF | 30% | 10d | 2026-10-25 | 2026-11-04 | 45d | 22d | Walls [322.39]; Columns [115.56]; Unskilled Labor [384 h]; Carpenter [192 h]; Steel Fixer [192 h] | 476,323.64 | GR&FE | CON | E.F.P2 |
| CO-SU-FE-EP2-CI-390 |  | Pouring Beams For Northern Fence | 10d | 2026-12-02 | 2026-12-13 | CO-SU-FE-EP2-CI-380, CO-SU-FE-EP2-AR-400, CO-SU-FE-EP1-CI-340 |  |  |  |  | 33d | 21d | Beams [84.85]; Unskilled Labor [224 h]; Carpenter [112 h]; Steel Fixer [112 h] | 95,505.45 | GR&FE | CON | E.F.P2 |
|  | 5 | **Finishing Work** |  | 2026-09-29 | 2027-05-03 |  |  |  |  |  |  |  |  |  |  |  |  |
|  | 3 | **Electrical Work** |  | 2026-12-02 | 2027-05-03 |  |  |  |  |  |  |  |  |  |  |  |  |
| CO-SU-FE-EP2-EL-860 |  | Trench excavation to receive 2 nos 50mm diameter PVC Conduit | 4d | 2026-12-02 | 2026-12-06 | CO-SU-FE-EP2-AR-400 |  |  |  |  | 23d | 0d | Trench excavation to receive 2 nos 50mm diameter PVC Conduit, sand bedding and embedded with sa [1109.68]; Unskilled Labor [32 h]; Electrical Technician [64 h] | 41,635.15 | GR&FE | CON | E.F.P2 |
| CO-SU-FE-EP2-EL-920 |  | Trench excavation to receive 3 nos 50mm diameter PVC Conduit | 4d | 2026-12-02 | 2026-12-06 | CO-SU-FE-EP2-EL-860 SS |  |  |  |  | 23d | 0d | 800mm depth minimum Trench excavation to receive 3 nos 50mm diameter PVC Conduit with spacer, sand bedding an [474.9]; Unskilled Labor [48 h]; Electrical Technician [96 h] | 19,090.91 | GR&FE | CON | E.F.P2 |
| CO-SU-FE-EP2-EL-910 |  | Install 800mm x 800mm x 800mm height concrete handhole | 3d | 2026-12-07 | 2026-12-09 | CO-SU-FE-EP2-EL-860, CO-SU-FE-EP2-EL-920 |  |  |  |  | 23d | 11d | Supply and install 800mm x 800mm x 800mm height concrete handhole with bituminous paint all aroun [6.02]; Unskilled Labor [56 h]; Electrical Technician [112 h] | 10,349.82 | GR&FE | CON | E.F.P2 |
| CO-SU-FE-EP2-EL-930 |  | Hot dipped galvanized cable conduits for CAT6A cable and Control Cables embedded to wall | 3d | 2026-12-07 | 2026-12-09 | CO-SU-FE-EP2-EL-860, CO-SU-FE-EP2-EL-920 |  |  |  |  | 23d | 11d | Hot dipped galvanized cable conduits for CAT6A cable and Control Cables embedded to wall [132.97]; 400V, 3PH, 60Hz lighting control panel (LCP-02) [0.32]; Unskilled Labor [56 h]; Electrical Technician [112 h] | 13,457.18 | GR&FE | CON | E.F.P2 |
| CO-SU-FE-EP2-EL-900 |  | Fixing of Control cable,CAT6A cable | 3d | 2026-12-20 | 2026-12-22 | CO-SU-FE-EP2-EL-860, CO-SU-FE-EP2-EL-920, CO-SU-FE-EP1-EL-700 |  |  |  |  | 12d | 0d | Control cable [984.62]; CAT6A cable [984.62]; Unskilled Labor [56 h]; Electrical Technician [112 h] | 9,895.45 | GR&FE | CON | E.F.P2 |
| CO-SU-FE-EP2-EL-880 |  | Fixing Earthing Work (Earth Pit,Grounding rod,Tinned Copper wire) | 3d | 2026-12-23 | 2026-12-26 | CO-SU-FE-EP2-EL-900, CO-SU-FE-EP2-EL-910, CO-SU-FE-EP2-EL-930 |  |  |  |  | 12d | 0d | Earth Pit [5.38]; Grounding rod 20mmX3m [2.85]; Grounding rod with Pit 20mmX3m [1.27]; Earthing Bar [0.95]; 120mm2 Tinned copper wire [63.32]; Unskilled Labor [48 h]; Electrical Technician [96 h] | 6,087.24 | GR&FE | CON | E.F.P2 |
| CO-SU-FE-EP2-EL-940 |  | Field Equipment Cabinet enclosed outdoor complete with precast concrete footing, | 4d | 2026-12-27 | 2026-12-30 | CO-SU-FE-EP2-EL-880 |  |  |  |  | 12d | 0d | Field Equipment Cabinet enclosed outdoor complete with precast concrete footing, suitable for parame [6.02]; Unskilled Labor [32 h]; Electrical Technician [64 h] | 37,207.76 | GR&FE | CON | E.F.P2 |
| CO-SU-FE-EP2-EL-950 |  | Fence Lightining 400V, 3PH, 60Hz lighting control panelï¿½ (LCP-02) | 4d | 2026-12-27 | 2026-12-30 | CO-SU-FE-EP2-EL-880 |  |  |  |  | 12d | 0d | Unskilled Labor [32 h]; Electrical Technician [64 h] |  | GR&FE | CON | E.F.P2 |
| CO-SU-FE-EP2-EL-960 |  | Install of direct buried armored cable 4C-16mm2 ,10mm2 | 3d | 2026-12-31 | 2027-01-03 | CO-SU-FE-EP2-EL-940, CO-SU-FE-EP2-EL-950 |  |  |  |  | 12d | 0d | 4C-16mm2 CU/XLPE/PVC direct buried armored cable [411.58]; 4C-10mm2 CU/XLPE/PVC direct buried armored cable [269.11]; Unskilled Labor [56 h]; Electrical Technician [112 h] | 26,006.06 | GR&FE | CON | E.F.P2 |
| CO-SU-FE-EP2-EL-970 |  | Install 16mm2,10mm2 CU/PVC wire | 3d | 2026-12-31 | 2027-01-03 | CO-SU-FE-EP2-EL-940, CO-SU-FE-EP2-EL-950 |  |  |  |  | 12d | 0d | 16mm2 CU/PVC wire [411.58]; 10mm2 CU/PVC wire [269.11]; Unskilled Labor [56 h]; Electrical Technician [112 h] | 4,656.06 | GR&FE | CON | E.F.P2 |
| CO-SU-FE-EP2-EL-990 |  | FEC-CCTV ( 4C-16mm2 CU/XLPE/PVC direct buried armored cable,16mm2 CU/PVC wire | 6d | 2026-12-31 | 2027-01-06 | CO-SU-FE-EP2-EL-940, CO-SU-FE-EP2-EL-950 |  |  |  |  | 12d | 0d | 4C-16mm2 CU/XLPE/PVC direct buried armored cable [1291.72]; 16mm2 CU/PVC wire [1291.72]; Unskilled Labor [56 h]; Electrical Technician [112 h] | 60,581.82 | GR&FE | CON | E.F.P2 |
| CO-SU-FE-EP2-EL-850 |  | Junction Box for lighting fixture | 3d | 2027-01-04 | 2027-01-06 | CO-SU-FE-EP2-EL-960, CO-SU-FE-EP2-EL-970 |  |  |  |  | 12d | 0d | Junction Box for lighting fixture [43.06]; Unskilled Labor [24 h]; Electrical Technician [48 h] | 3,548.36 | GR&FE | CON | E.F.P2 |
| CO-SU-FE-EP2-EL-890 |  | IR Intrusion Detection System Quad Beams | 3d | 2027-04-26 | 2027-04-29 | CO-SU-FE-EP2-EL-960, CO-SU-FE-EP2-EL-970, CO-SU-FE-EP2-EL-990, CO-SU-FE-EP2-EL-850, CO-SU-FE-EP2-AR-430, CO-SU-FE-EP2-AR-440, CO-SU-FE-EP2-AR-420, CO-SU-FE-EP1-EL-740 |  |  |  |  | -53.5d | 0d | IR Intrusion Detection System Quad Beams (Tx & Rx) (SL-350 QDM) [19]; Unskilled Labor [56 h]; Electrical Technician [112 h] | 134,094.55 | GR&FE | CON | E.F.P2 |
| CO-SU-FE-EP2-EL-980 |  | Install of 38W, 230V, 1PH, 60Hz fence, led linear uplight lighting, IP66 | 3d | 2027-04-26 | 2027-04-29 | CO-SU-FE-EP2-EL-970, CO-SU-FE-EP2-EL-990, CO-SU-FE-EP2-EL-850, CO-SU-FE-EP2-AR-420, CO-SU-FE-EP2-AR-430, CO-SU-FE-EP2-AR-440, CO-SU-FE-EP1-EL-740 |  |  |  |  | -53.5d | 0d | 38W, 230V, 1PH, 60Hz fence, led linear uplight lighting, IP66 [43.06]; Unskilled Labor [56 h]; Electrical Technician [112 h] | 19,732.36 | GR&FE | CON | E.F.P2 |
| CO-SU-FE-EP2-EL-870 |  | Install, fixings, testing and commissioning 80W LED | 3d | 2027-04-29 | 2027-05-03 | CO-SU-FE-EP2-EL-890, CO-SU-FE-EP2-EL-980, CO-SU-FE-EP1-EL-720 |  |  |  |  | -53.5d | 35.7d | Supply, Install, fixings, testing and commissioning 80W LED Projector waterproof DJ effect light including c [0.95]; Unskilled Labor [48 h]; Electrical Technician [96 h] | 864.82 | GR&FE | CON | E.F.P2 |

| ID | WBS | Activity | Duration | Start | Finish | Predecessors | Complete | Remaining | Planned start | Planned finish | Total float | Free float | Resources | Cost | 01- Network | 08 Stage | 12 FENCE |
| --- | --- | --- | --- | --- | --- | --- | --- | --- | --- | --- | --- | --- | --- | --- | --- | --- | --- |
|  | 4 | **Architictural work** |  | 2026-09-29 | 2027-04-28 |  |  |  |  |  |  |  |  |  |  |  |  |
| CO-SU-FE-EP2-AR-400 |  | Install Brick Work For Northern Fence | 6d | 2026-09-29 A | 2026-12-01 | CO-SU-FE-EP2-CI-380 FF, CO-SU-FE-EP2-CI-380 SS, CO-SU-FE-EP1-EL-840 FF | 23% | 6d | 2026-12-05 | 2026-12-10 | 23d | 0d | Common brickwork. 300mm thick; vertical straight wall complete with accessories. [2778.15]; Insulated brickwork. with expanded polystyrene 200mm thick; vertical straight wall complete with accessories .; Common brickwork. 150mm thick; vertical straight wall complete with accessories.; Two Layers of Bituminous Coating [12401.2]; 20x20 Approved Polysulfide Joint Sealant [131.39]; Unskilled Labor [80 h]; Skilled Labor [160 h] | 369,854.55 | GR&FE | CON | E.F.P2 |
| CO-SU-FE-EP2-AR-410 |  | External plastering to walls and columns | 5d | 2027-01-07 | 2027-01-12 | CO-SU-FE-EP2-AR-400, CO-SU-FE-EP2-CI-390, CO-SU-FE-EP2-EL-990, CO-SU-FE-EP2-EL-970, CO-SU-FE-EP2-EL-960, CO-SU-FE-EP2-EL-850 |  |  |  |  | 12d | 0d | Unskilled Labor [56 h]; Skilled Labor [112 h] |  | GR&FE | CON | E.F.P2 |
| CO-SU-FE-EP2-AR-420 |  | Install 50mm thick random cut stone cladding | 5d | 2027-01-13 | 2027-01-18 | CO-SU-FE-EP2-AR-410 |  |  |  |  | 12d | 0d | Supply and install 33mm thick Lexan cladding blue complete with necessary framings [353]; Supply and install 50mm thick random cut stone cladding complete with 600m [1547.76]; Supply and install External plastering to walls and columns min. 15mm thick with cement mortar of specified grade including [5307.78]; Unskilled Labor [56 h]; Skilled Labor [112 h] | 575,788.44 | GR&FE | CON | E.F.P2 |
| CO-SU-FE-EP2-AR-430 |  | Install 2 coats of weatherproof paint at walls | 5d | 2027-01-19 | 2027-01-24 | CO-SU-FE-EP2-AR-420 |  |  |  |  | 12d | 65.5d | Supply and install 2 coats of weatherproof paint at walls including one prime coat and [5307.78]; Unskilled Labor [48 h]; Skilled Labor [96 h] | 149,360.91 | GR&FE | CON | E.F.P2 |
| CO-SU-FE-EP2-AR-440 |  | Install Stone coping 500mm,525mm | 4d | 2027-04-21 | 2027-04-26 | CO-SU-FE-EP2-AR-430, MS-CF-SW |  |  |  |  | -53.5d | 0d | Guard room coping 350mm [18.05]; Guard room coping 450mm [8.55]; Stone coping 500mm [808.91]; Stone coping 525mm [387.52]; Unskilled Labor [32 h]; Skilled Labor [64 h] | 172,735.82 | GR&FE | CON | E.F.P2 |
| CO-SU-FE-EP2-AR-450 |  | Install MODON Signage | 2d | 2027-04-26 | 2027-04-28 | CO-SU-FE-EP2-AR-440, CO-SU-FE-EP1-AR-390 |  |  |  |  | -49.5d | 39.7d | Supply and install MODON Signage with Logo Type 1 [7.6]; Supply and install MODON Signage Type 2 [7.6]; Supply and install "Triangle Style" signage [17.41]; Unskilled Labor [48 h]; Skilled Labor [96 h] | 150,181.82 | GR&FE | CON | E.F.P2 |
|  | TC | **Testing and Comissioning** |  | 2026-10-24 | 2027-06-10 |  |  |  |  |  |  |  |  |  |  |  |  |
|  | INF | **Infrastructure Networks** |  | 2027-05-01 | 2027-06-10 |  |  |  |  |  |  |  |  |  |  |  |  |
|  | PW1 | **Irrigation Network** |  | 2027-05-23 | 2027-05-27 |  |  |  |  |  |  |  |  |  |  |  |  |
| T/C-IR |  | Testing and Commissioning of Irrigation Network | 5d | 2027-05-23 | 2027-05-27 | T/C-PW SS, CO-IR-TF-160, CO-TSE-TF-170, CO-LS-PL-180, T/C-SW |  |  |  |  | -83d | 0d | pipe line O.D 32 mm PN 10, in depth 0 to 1.5 m; pipe line O.D 40 mm PN 10, in depth 0 to 1.5 m; pipe line O.D 50 mm PN 10, in depth 0 to 1.5 m; Gate valve 50 mm PN16; Direct Burried Gate valve 40 mm PN16; Pressure–compensating bubblers 110 Lit/Hr; Flushing Bronze gate valve dia 1.5" inside PVC box; Air release valve 1.5" inside PVC box; Extra flexible pressure compensating on surface inline dripline`s, O.D. is 16.1 mm; Electrical Solenoid Valve ( 1.5") inside PVC box; Electrical Solenoid Valve ( 2") inside PVC box; Quick coupling valve 1" inside a round valve box 10" size with a manual gate valve, hose swivel and key with all accessories; Advanced Irrigation controller subject to client approval, can connect with Centarl Control system; Decoder cables 12 AWG between valves and controllers, The cables shall be pulled through 32Ø UPVC conduit; Preparing the irrigation program for the entire system and providing technical services for monitoring and controlling the central irrigation systems |  | IR |  |  |
|  | PW11 | **TSE Network** |  | 2027-05-11 | 2027-06-03 |  |  |  |  |  |  |  |  |  |  |  |  |
| T/C-TSE-10 |  | Testing and Commissioning of TSE Network | 15d | 2027-05-11 | 2027-06-03 | CO-TSE-TF-170, T/C-SD, CO-UB-IRT-250 |  |  |  |  | -80.2d | 0d | Depth Between 0m to 1.50m; Depth Between 1.50m to 2.50m; Depth > 2.50m; Gate valves dia 50 mm; Gate valves dia 100 mm; Gate valves dia 150 mm; Gate valves dia 200 mm; Air valves with dia 50 mm; Washout valve dia 100 mm; Wash out chamber (2500x 2500mm); Air valve chamber (1000x 1000 mm); Flow meter chamber (1500x 3000 mm); Flow meter dia 150 mm; Glass Fused Bolted (GLS) 1500 m3 Tank with associated accessories & manufacturer recommendation for the foundation |  | TSE |  |  |
|  | PW | **Potable Water Network** |  | 2027-05-23 | 2027-05-29 |  |  |  |  |  |  |  |  |  |  |  |  |
| T/C-PW |  | Testing and Commissioning of Potable Water Network | 6d | 2027-05-23 | 2027-05-29 | CO-PW-TF-110, CO-PW-TF-100, CO-PW-TF-120, CO-UB-PS-390, CO-UB-LS-470, CO-UB-LS-480, MS-CF-MV |  |  |  |  | -83d | 0d | Depth Between 0m to 1.50m; Depth Between 1.50m to 2.50m; Depth > 2.50m; Gate valves Dia 50 mm; Gate valves Dia 100 mm; Gate valves Dia 150 mm; Gate valves Dia 250 mm; Air valves with Dia 50 mm; Washout valve Dia 100 mm; 3-outlet fire hydrant (2 x 2.5 inch and 1 x 4.5 inch) in the form of a separate dry vacuum cylinder, complete according to drawings.; Wash out chamber (2500x 2500mm); Air valve chamber (1000x 1000 mm); Flow meter chamber (1500x 2500 mm); Flow meter dia 100 mm; Glass Fused Bolted (GLS) 1500 m3 Tank with associated accessories & manufacturer recommendation for the foundation |  | PW |  |  |
|  | SW | **Sewage Network** |  | 2027-05-11 | 2027-05-20 |  |  |  |  |  |  |  |  |  |  |  |  |
| T/C-SW |  | Testing and Commissioning of Sewage Network | 3d | 2027-05-11 | 2027-05-20 | T/C-SD, CO-SW-TF-100, CO-SW-TF-210, MS-CF-SW, CO-SW-TF-130, CO-SW-TF-110 |  |  |  |  | -89.2d | 0d | Depth Between 0m to 1.50m; Depth Between 1.50m to 2.50m; Depth > 2.50m; Depth Between 2.50m to 3.50m; Depth > 3.50m; HDPE Force Main (PE 100, SDR 11, PN 16 bar) DN 160 mm diameter, in trenches depth: 0- 1.5m; HDPE Force Main (PE 100, SDR 11, PN 16 bar) DN 160 mm diameter, in trenches depth: 1.51- 2.5m; Depth: 0 - 1.5m; Depth: 1.51 - 2.5m; Depth: 2.51 - 3.5m |  | SW |  |  |
|  | SD | **Storm Drainage Network** |  | 2027-05-01 | 2027-05-11 |  |  |  |  |  |  |  |  |  |  |  |  |
| T/C-SD |  | Testing and Commissioning of Storm Drainage Network | 9d | 2027-05-01 | 2027-05-11 | CO-SD-ML-TF-100, CO-SD-CB-TF-160, CO-SD-MH-TF-210, CO-SD-PO-110-P2, MS-CF-SD, CO-LS-PL-180, CO-SD-CB-TF-130, CO-SD-CB-TF-110, CO-SD-MH-TF-120 |  |  |  |  | -89.2d | 0d | Depth Between 0m to 1.50m; Depth Between 1.50m to 2.50m; Depth > 2.50m; Depth Between 2.50m to 3.50m; Depth > 3.50m; Depth Between 3.50m to 4.50m; Depth > 4.50m; MH depth 1.5 - 2.5m; MH depth 2.5 - 3.5m; MH depth > 3.50m; MH depth 2.5 -3.5m; Single Catch Basin 1000mm x 1000mm; Double Catch Basin 1200mm x 2300mm |  | SD |  |  |
|  | SL | **Street Lighting Network** |  | 2027-05-29 | 2027-06-03 |  |  |  |  |  |  |  |  |  |  |  |  |
| T/C-SL |  | Testing and Commissioning of Street Lighting Network | 6d | 2027-05-29 | 2027-06-03 | T/C-IR, CO-SL-TF-220, CO-SL-TF-230, CO-SL-TF-200, CO-SL-TF-380, CO-SL-LP-330, MS-CF-SL, T/C-DPO, T/C-SW |  |  |  |  | -83d | 0d | Road crossing ducts, 2 ways (2 x 150mm HDPE); Road crossing ducts, 2 ways (2 x 110mm UPVC); Road crossing ducts, 3 ways (3 x 110mm UPVC); 4C-300mm2 CU/XLPE / PVC ARMORED CABLE; 4C-240mm2 CU/XLPE / PVC ARMORED CABLE; 4C-185mm2 CU/XLPE / PVC ARMORED CABLE; 4C-50mm2 CU/XLPE / PVC ARMORED CABLE; 4C-16mm2 CU/XLPE / PVC ARMORED CABLE; 4C-16MM2 CU/XLPE / PVC CABLE; 1Cx150sq.mm2,Cu, PVC wire; 1Cx120sq.mm2,Cu, PVC wire; 1Cx95sq.mm,Cu, PVC wire; 1Cx70sq.mm2,Cu, PVC wire; 1Cx25sq.mm2,Cu, PVC wire; 1Cx16sq.mm2,Cu, PVC wire; 1Cx10sq.mm2,Cu, PVC wire; Supply and installation of KWH meter mounting frame including concrete block for installation of KWH meter; Street Lighting panels LCP (01); Lighting poles with 1 arm, height of (12) meters, including the power distribution box, cables, and RCC foundation.; Lighting poles with 2 arms, height of (12) meters, including the power distribution box, cables, and RCC foundation.; Street Lighting( LED) Luminaire of Output ? 20,965 lumen complete with control gear and lamp, (129.1) WATT.; Including earthing of lighting poles, masts, feeder pillars, unit substations and LV feeders. |  | SL |  |  |
|  | TE | **Telecom Network** |  | 2027-05-20 | 2027-05-24 |  |  |  |  |  |  |  |  |  |  |  |  |
| T/C-TE |  | Testing and Commissioning of Telecom Network | 3d | 2027-05-20 | 2027-05-24 | CO-TE-CTV-TF-110, CO-TE-CTV-TF-120, CO-TE-CTV-TF-130, CO-TE-CTV-TF-140, MS-CF-TE, CO-SL-ES-230, CO-TE-DW-130, T/C-SD, T/C-SW |  |  |  |  | -89.2d | 0d | 2-ways ducts, 50mm diameter; 6-ways ducts, 110mm diameter; 9-ways ducts, 6 x 160mm & 2 x 100mm; Manhole Type 2 (1600 x 1600 x 2000); Manhole Type 3 (1200 x 1200 x 2000); 6 PVC ducts 150x200 mm (60mm diameter); 6 PVC ducts 600x800 mm (120mm diameter); 6 PVC ducts 800x800 mm (170mm diameter); NVR Server with RAID (5, 6 or 10) to record all cameras storage 80TB with all hardware / software / licenses etc.; VMS Server with RAID (5, 6 or 10) complete Hardware / Software with one Color Laser Printer and all associated; Licenses for Cameras, Workstations and Keyboards; Work Station (MMI with two monitors each, for Monitoring for CCTV & ACS); Keyboard with joystick for CCTV with all accessories as per specification; Pole mounted IP( PoE) Fixed camera, 5MP,IP 66, IR illumination, 3-8mm varifocal, auto iris lens type; Wall mounted IP( PoE) Fixed camera, 5MP,IP 66, IR illumination, 3-8mm varifocal, auto iris lens type; 5MP Dome camera ceiling Mounted IP (PoE) indoor; 5MP PTZ Multi Sensor Camera IP(PoE) 360 Degree View Outdoor with accessories (IP 66); 8 Port Industrial PoE Switch 10/100BaseT (0 deg to +70 deg. Celsius); Filed Equipment cabinet (FEC), with fan and ventilation, NEMEX 4X ,door, minimum size (600x600x400mm); 6 PVC ducts 200x150 mm (60mm diameter); IP Phone Communication server (hot standby) 50 Port equipped, Gateway, Gatekeeper, H.323, SIP, redundant Power etc.; IP Phone Voice gateway; Voice IP Phone; NMS Server for IP phone and NETWORK Elements; NMS Workstation; Firm Ware, software & licenses; Data Cable; Power Cable; Layer 3, 24 Port non-PoE switch10/1000BaseT/LX (-40 deg to +70 deg. Celsius), stack module and associated; Layer 2, 24 Port non-PoE switch10/1000BaseT (-40 deg to +70 deg. Celsiu; Network Management System Server; Network Management System workstation; 42U rack dimension (W x H x L) 800 x 2000 x 1000 mm; 12U rack dimension (W x H x L) 600 x 625 x 600 mm; 06C Optical Fiber SM; 48C Optical Fiber SM; 48 Core Splice Closure; Optical fiber patch cord 5m; Data Cable (STP CAT 6A); 3C Power Cable armored 1.5mm2; 3C Power Cable armored 2.5 mm2; UTP CAT6A Patch Cord 1m/3m/5m; Access Control Unit; Access Card Reader; Magnetic Lock; Break Glass; Exit Push button; Door Sensor; Biometrics Reader; Smart Card Printer; Card Issue Work Station; Photographic Camera with stand; Interface modules with CCTV, Fire and other systems |  | TE |  |  |
|  | MV | **Medium Voltage Network** |  | 2027-05-20 | 2027-06-06 |  |  |  |  |  |  |  |  |  |  |  |  |
| T/C-MV |  | Testing and Commissioning of Medium Voltage Network | 14d | 2027-05-20 | 2027-06-06 | T/C-TE SS, CO-MV-TF-220, MS-CF-MV |  |  |  |  | -89.2d | 0d | Excavation for Trench size 40cm wide and 80cm deep (for 1 cable); Excavation for Trench Size 60cm wide and 80cm deep (for 2 cables); Excavation for Trench Size 90cm wide and 80cm deep (for 3 cables); Excavation for Trench Size 180cm wide and 80cm deep (for 6 cables); Excavation for Trench Size 210 cm wide and 80cm deep (for 7 cables); Excavation for Trench Size 240cm wide and 80cm deep (for 8 cables); Duct bank for (33) cables; Duct bank for (21) cables; Duct bank for (15) cables; HV Cable Road Crossing |  | MV |  |  |

| ID | WBS | Activity | Duration | Start | Finish | Predecessors | Total float | Free float | Resources | 01- Network | 13 BUILDINGS |
| --- | --- | --- | --- | --- | --- | --- | --- | --- | --- | --- | --- |
|  | RD | **Road Works** |  | 2027-06-07 | 2027-06-10 |  |  |  |  |  |  |
| T/C-RD |  | Testing and Commissioning of Road Works | 4d | 2027-06-07 | 2027-06-10 | T/C-MV, T/C-TE, T/C-SD, CO-RD-B-160, CO-RD-PV-160, CO-RD-PV-170, CO-RD-F-RM-180, CO-RD-F-TS-120, CO-RD-B-130, CO-RD-B-140, CO-RD-PV-140, CO-RD-PV-150, CO-RD-F-RM-170, CO-RD-F-TS-110, CO-RD-B-110, CO-RD-B-120, CO-RD-PV-120, CO-RD-PV-130, CO-RD-F-RM-160 FF, CO-RD-F-TS-100 FF, MS-CF-PW, MS-CF-IR, MS-CF-TSE | -85d | 0d | Excavations (including Roads , Plots and Pond); Embankments to the Site and Roads (including Roads , Plots and Pond); Subgrade; Aggregate base course; Bituminous base course (Grading I - Class A), including Prime Coat (MC1); Bituminous concrete wearing course, (Grading I - Class A), including tack coat (RC2); Precast Concrete Curbstone 150X300X900 Type (K1-A); Precast Concrete Curbstone 100X200X500 Type (K4); Precast Concrete Curbstone 150X300X500 Type (K1-B); Precast Concrete Curbstone Type (K1-C); Flush Kerb Type (D); 60mm thick; 80mm thick; Retroreflective Thermoplastic White Traffic lines; Retroreflective Thermoplastic Yellow, Traffic lines; Traffic signs, ground mounted, Sheet Aluminum, (breakaway) Single post IPE, with all accessories; Precast Concrete Blister Warning Tactile Paver Brown Finish 300*300*60mm | RD |  |
|  | 1 | **Utility Buildings** |  | 2026-10-24 | 2027-06-03 |  |  |  |  |  |  |
| T/C-DPO |  | Testing and Commissioning of Storm Drainage Ponds | 0d | 2026-10-24 | 2026-10-24 | CO-SD-PO-110-P1, CO-SD-PO-110-P2 | 88d | 0d | Finished grouted riprap for Pond 300mm as per drawings | SD |  |
| T/C-CTV |  | Testing and Commissioning of Guard Room and Fence | 0d | 2027-05-22 | 2027-05-22 | CO-UB-CR-360, A1100 | -64d | 25.2d | 100 mm thickness lean concrete under the foundation; Foundation; Slab on Grade; Walls; Beams; Columns; Slabs; Lightweight Concrete Roof insulation as per Architect's specification; Common brickwork. 300mm thick; vertical straight wall complete with accessories.; Insulated brickwork. with expanded polystyrene 200mm thick; vertical straight wall complete with accessories .; Common brickwork. 150mm thick; vertical straight wall complete with accessories.; Two Layers of Bituminous Coating; 20x20 Approved Polysulfide Joint Sealant; 2 perpendicular layers of cold bitumen coats; 2 layer of 4mm HDPE membrane, 2 perpendicular layers cold bitumen coats; 1 layer EPOXY Paint 300 micron; Membrane fully bonded to prime deck and upstand; Geotextile Filter membrane uv resistance; 85mm thick thermal insulation; 1.5mm thick epdm waterproofing membrane; CW01 - 4500 mm width x 3700 mm height; CW02 - 4500 mm width x 3700 mm height; CW03 - 4500 mm width x 3700 mm height; CW04 - 4500 mm width x 3700 mm height; CW05 - 7500 mm width x 4250 mm height; CW06 - 7500 mm width x 4250 mm height; W01 - 1000 mm width x 2000 mm height; W02 - 2000 mm width x 2000 mm height; W03 - 2000 mm width x 1000 mm height; D2 - 900 mm x 2200 mm height temper door; D3 - 950 mm x 2000 mm height temper door; Supply and install 33mm thick Lexan cladding blue complete with necessary framings; Supply and install 50mm thick random cut stone cladding complete with 600m; Supply and install External plastering to walls and columns min. 15mm thick with cement mortar of specified grade including; Supply and install 2 coats of weatherproof paint at walls including one prime coat and; Supply and install 300*300mm terrazzo tiles with 150mm high skirting at perimeter with approv; Supply and install 300*300mm glazed ceramic wall tiles on cement mortar and including rough; Supply and install internal plastering and 2 coats of acrylic paint at walls includin; Supply and install 300*300mm glazed ceramic wall tiles on cement mortar and including rough and smooth p; Supply and install 600*600mm porcelain tiles with approved quality on 30 mm mortar inclu; Supply and install 12.5mm thk, gypsum board suspended ceiling including s; Guard room coping 350mm; Guard room coping 450mm; Stone coping 500mm; Stone coping 525mm; Supply and install MODON Signage with Logo Type 1; Supply and install MODON Signage Type 2; Supply and install "Triangle Style" signage; Office Chairs; Office Tables; Guard Stand; Magnetic Control Access barrier, Automatic Vehicular Barriers to be installed on ground with magnetic access; Supply and install Hand Wash Basin with Water Tap, angle valve, P-trap connected to 50mm diameter s; Supply and install paper towel dispenser, surface mounted, satin finish stainless steel as per approv; Supply and install mirror, size 460*910mm as per approved sample including frames, backing and all accessories to complete.; Supply and install towel ring , surface mounted, satin finish stainless steel as per approved sample including accessories.; Kitchen sink with single bowl with hot/cold water mixer.; Supply and install Base mounted flush tank water Western water closet system with lid connected to 110mm soil pipe; Gate Valves; Slow Closing Valve; 1 meter length 10mm diameter Flexible Hose with insulated handle complete with fork support, index push, vacuum breaker; 50mm diameter; 75mm diameter; 80mm diameter; 100mm diameter; 110mm diameter; 13mm diameter; 15mm diameter; 20mm diameter; 25mm diameter; 32mm diameter; 40mm diameter; Isolation Valve Size 20; Isolation Valve Size 25; Isolation Valve Size 32; Isolation Valve Size 40; Isolation Valve Size 50; 20 mm diameter spray head for cold water supply; Supply and install Electric Water Heater set with connection; Water meter complete with accessories.; Roof drain; Vent on a roof to exhaust air; Floor drain 100x80mm; Gully trap 300x300 mm; inspection chamber, size 800x900x1000; Mini split actual capacity 2 Ton; Ducted split actual capacity 4 Ton; Supply, fabricate, install and testing factory fabricated metal ducts with flanges complete with supports, vanes,; Supplying, installation testing & commissioning of external insulation on ducts; Supply, fix, testing and commissioning of exhaust air/fresh air louvers of powder coated extruded aluminium construction.; Providing, fixing, testing and commissioning of powder coated extruded aluminum sections grills and diffusers with dampers.; Air Grills 150mm x150mm; Air Diffuser 600mm x 600mm; Supply, Installation & Testing of 2 hours Fire rated system for closing the openings between roo; 4.5 KG CO2 Type Fire Extinguishers; 6 KG ABC Type Fire Extinguishers; Floor cleanout, size 75 mm diameter; Floor cleanout, size 110 mm diameter; GRP water tanks capacity of each 1000 liter complete with all fittings, all valves and concrete pad; Junction Box for lighting fixture; Trench excavation to receive 2 nos 50mm diameter PVC Conduit, sand bedding and embedded with sa; Supply, Install, fixings, testing and commissioning 80W LED Projector waterproof DJ effect light including c; Earth Pit; Grounding rod 20mmX3m; Grounding rod with Pit 20mmX3m; Earthing Bar; 120mm2 Tinned copper wire; Guard Room 1; Guard Room 2; Guard Room 3; 30A, 2P AC Disconnect Switch; 20A Duplex Receptacle Floor Mounted; Twin Socket outlet; Twin Socket outlet, Weather Proof; Single gang Lighting switch; 2way Single gang Lighting switch; 36W LED linear Pendant lighting; 36W LED Emergency linear Pendant lighting; 13W recess mounted LED down light fitting; 13W recess emergency mounted LED down light fitting with 1.5 Hr Battery; 10.4W LED Exit light with 1.5 Hr Battery; 4mm2 Cu./FRLSZH Cable; 6mm2 Cu./FRLSZH Cable; IR Intrusion Detection System Quad Beams (Tx & Rx) (SL-350 QDM); Control cable; CAT6A cable; Field Equipment Cabinet enclosed outdoor complete with precast concrete footing, suitable for parame; Supply and install 800mm x 800mm x 800mm height concrete handhole with bituminous paint all aroun; 800mm depth minimum Trench excavation to receive 3 nos 50mm diameter PVC Conduit with spacer, sand bedding an; Hot dipped galvanized cable conduits for CAT6A cable and Control Cables embedded to wall; 8 Port Industrial PoE Switch 10/100BaseT (0 deg to +70 deg. Celsius); 06C Optical Fiber SM; 48C Optical Fiber SM; 48 Core Splice Closure; Boom Barrier at Security Guard Room; Pedestrian turnstile at Security Guard Room; Access Control Unit; Access Card Reader; Magnetic Lock; Break Glass; Exit Push button; Door Sensor; Biometrics Reader; Pole/Bollard mounted IP( PoE), Automatic Number Plate Recognition (ANPR, camera, 5MP,IP 66, IR illumin; 12U rack dimension (W x H x L) 600 x 625 x 600 mm; 400V, 3PH, 60Hz lighting control panel (LCP-02); 38W, 230V, 1PH, 60Hz fence, led linear uplight lighting, IP66; 4C-16mm2 CU/XLPE/PVC direct buried armored cable; 4C-10mm2 CU/XLPE/PVC direct buried armored cable; 16mm2 CU/PVC wire; 10mm2 CU/PVC wire; Fire Alarm Control panel with fire alarm zoning with Mimic panel with fire alarm zoning; Main Fire Alarm Control panel with fire alarm zoning with Mimic panel with fire alarm zoning; Supply and installation of the addressable manual call point with operation safety glass breaking and pushbutton; Supply and installation of the photoelectric heat & smoke detector with base; Sounder With Beacon; Addressable Control module for Sounders; Addressable Control module for HVAC System; Addressable Monitor module for HVAC System; 2C x 1.5 Sqm FR Rated Armored - Cable For Loop Wiring; DACT (Auto - Dailer) for 24x7 Civil Defence; Transmission Communication cable - Fiber Optics 12Core; Transmission Communication cable - Ethernet Cable; Supply, install to site and installation of power supply system for fire alarm control panel; Supply, install to site and installation of power cable; Fire Fighter’s Telephone Centre; Fireman’s Telephone Jack; Voice Command Center | GR&FE |  |
| T/C-SPS |  | Testing and Commissioning of Sewage Pump Stations& soft scape and planting work | 0d | 2027-06-03 | 2027-06-03 | T/C-TSE-10, CO-UB-PS-390, CO-UB-PS-380, CO-UB-PS-360, CO-UB-PS-350, CO-UB-PS-340, CO-UB-PS-370, CO-UB-PS-330, CO-UB-PS-310, CO-UB-PS-290, CO-UB-PS-300, CO-UB-PS-320, CO-UB-PS-280, CO-UB-PS-270, CO-UB-PS-260, CO-UB-PS-250, CO-UB-PS-240 | -76.2d | 0d | Price | UB | LIFT |
|  | 1 | **Handing over and close out** |  | 2026-10-24 | 2027-06-20 |  |  |  |  |  |  |
|  | 2 | **As-Built** |  | 2026-10-24 | 2027-06-20 |  |  |  |  |  |  |
| HO-130 |  | Submission As-Built Drawing For Pond | 14d | 2026-10-24 | 2026-11-08 | T/C-DPO, CO-SD-PO-110-P2, CO-SD-PO-110-P1 | 88d | 177.2d |  |  |  |
| HO-100 |  | Submission As-Built Drawing For Sewage Network | 14d | 2027-05-20 | 2027-06-06 | T/C-SW, CO-SW-TF-210, CO-SW-TF-130, CO-SW-TF-110, CO-SW-TF-100 | -77.2d | 12d |  |  |  |
| HO-160 |  | Submission As-Built Drawing For Telecom Network | 12d | 2027-05-24 | 2027-06-07 | T/C-TE, CO-TE-CTV-TF-110, CO-TE-CTV-TF-120, CO-TE-CTV-TF-130, CO-TE-CTV-TF-140 | -78.2d | 11d |  |  |  |
| HO-180 |  | Submission As-Built Drawing For Irrigation Network | 12d | 2027-05-29 | 2027-06-10 | T/C-IR, CO-IR-TF-160 | -82d | 7.2d |  |  |  |
| HO-190 |  | As-Built Drawing For Potable Water Network | 12d | 2027-05-30 | 2027-06-12 | T/C-PW, CO-PW-TF-100, CO-PW-TF-110, CO-PW-TF-120 | -83d | 6.2d |  |  |  |
| HO-210 |  | Submission As-Built Drawing For Pump station | 1d | 2027-06-03 | 2027-06-05 | T/C-SPS, CO-UB-PS-390, CO-UB-PS-380, CO-UB-PS-360, CO-UB-PS-350, CO-UB-PS-370, CO-UB-PS-330, CO-UB-PS-310, CO-UB-PS-300, CO-UB-PS-290, CO-UB-PS-320, CO-UB-PS-280 | -76.2d | 13d |  |  |  |
| HO-150 |  | Submission As-Built Drawing For Street Lighting Network | 7d | 2027-06-05 | 2027-06-12 | T/C-SL, CO-SL-LP-330, CO-SL-TF-200, CO-SL-TF-220, CO-SL-TF-230, CO-SL-TF-380, CO-SL-ES-220, CO-SL-ES-230 | -83d | 6.2d |  |  |  |
| HO-170 |  | Submission As-Built Drawing For Medium Voltage Network | 12d | 2027-06-06 | 2027-06-20 | T/C-MV, CO-MV-TF-220 | -89.2d | 0d |  |  |  |
| HO-140 |  | Submission As-Built Drawing For Roads Network | 3d | 2027-06-12 | 2027-06-14 | T/C-RD, CO-RD-B-150, CO-RD-B-160, CO-RD-PV-160, CO-RD-PV-170, CO-RD-F-RM-180, CO-RD-F-TS-120, CO-RD-B-130, CO-RD-B-140, CO-RD-PV-140, CO-RD-PV-150, CO-RD-F-RM-170, CO-RD-F-TS-110, CO-RD-B-110, CO-RD-B-120, CO-RD-PV-120, CO-RD-PV-130, CO-RD-F-RM-160 SS, CO-RD-F-TS-100 SS | -85d | 4.2d |  |  |  |
|  | 1 | **De-Mobilization Works** |  | 2027-06-07 | 2027-06-12 |  |  |  |  |  |  |
| HO-230 |  | Remove Temporary Car Shades | 5d | 2027-06-07 | 2027-06-12 | T/C-RD SS, T/C-MV, T/C-TE, T/C-SL, T/C-SD, T/C-SW, T/C-PW, T/C-TSE-10, T/C-IR | -83d | 6.2d |  |  |  |
|  | 3 | **Handing Over** |  | 2027-06-12 | 2027-06-14 |  |  |  |  |  |  |
| HO-250 |  | Review B.O.Q Qty. to ensure compliance with the actual status | 3d | 2027-06-12 | 2027-06-14 | T/C-RD, T/C-RD FF, T/C-MV, T/C-TE, T/C-SL, T/C-SD, T/C-SW, T/C-PW, T/C-TSE-10, T/C-IR | -85d | 4.2d |  |  |  |

## Activity codes

| Code | Value | Meaning |
| --- | --- | --- |
| 01- Network | GR&FE | GAURD ROOM AND FENCE |
| 01- Network | IR | Irrigation Network |
| 01- Network | MV | Medium Voltage Network |
| 01- Network | PW | Potable Water Network |
| 01- Network | RD | Roads Network |
| 01- Network | SD | Storm Drainage Network |
| 01- Network | SL | Street Lighting Network |
| 01- Network | SW | Sewage Network |
| 01- Network | TE | Telecom Network |
| 01- Network | TSE | Treated Sewage Effluent |
| 01- Network | UB | UTILITY BUILDING |
| 08 Stage | CON | Construction |
| 12 FENCE | E.F.P1 | EASTERN FENCE-P1 |
| 12 FENCE | E.F.P2 | EASTERN FENCE-P2 |
| 12 FENCE | NORTH | NORTHERN FENCE |
| 12 FENCE | S.F | SOTHERN FENCE |
| 12 FENCE | W.F.P1 | WESTERN FENCE-P1 |
| 12 FENCE | W.F.P2 | WESTERN FENCE-P2 |
| 13 BUILDINGS | LIFT | LIFT STATION |
| 13 BUILDINGS | LS | LANDSCAPE |
| 13 BUILDINGS | PUMP | PUMP STATION |
| Displane | PT | Pot water |
| Displane | SW | Sew |
| Displane | St | Storm |
| Displane | irr | irri |
| Displane | sL | sl |
