# Development of the Technology City in Dhahran Project Recovery -REV.00

Schedule from Primavera P6, 2026-01-06 to 2027-07-27, data date 2026-11-09, costs in USD, A marks actual dates.
Must finish by 2027-03-05

## Calendars

- MODON - ACTIVITY: Mon-Thu 08:00-12:00, 13:00-17:00; Fri off; Sat-Sun 08:00-12:00, 13:00-17:00. Exceptions (off unless hours are given): 2026-02-22, 2026-03-21 to 2026-03-23, 2026-05-26 to 2026-05-28, 2026-05-30, 2026-09-23, 2027-03-09 to 2027-03-11, 2027-05-15 to 2027-05-19, 2027-06-15 to 2027-06-17 06:00-12:00, 15:00-17:00, 2027-06-19 to 2027-06-24 06:00-12:00, 15:00-17:00, 2027-06-26 to 2027-07-01 06:00-12:00, 15:00-17:00, 2027-07-03 to 2027-07-08 06:00-12:00, 15:00-17:00, 2027-07-10 to 2027-07-15 06:00-12:00, 15:00-17:00, 2027-07-17 to 2027-07-22 06:00-12:00, 15:00-17:00, 2027-07-24 to 2027-07-27 06:00-12:00, 15:00-17:00.

## Resources

| Resource | Group | Rate |
| --- | --- | --- |
| physical units | labor |  |
| MH depth 1.5 - 2.5m | material | 350.13 |
| MH depth 2.5 - 3.5m | material | 501.17 |
| MH depth 3.5 - 4.5m | material | 593.3 |
| MH depth > 4.50m | material | 660.93 |
| MH depth 2.5 -3.5m | material | 647.04 |
| MH depth > 3.50m | material | 760.71 |
| Depth Between 0m to 1.50m | material | 12.83 |
| Depth Between 1.50m to 2.50m | material | 14.63 |
| Depth Between 2.50m to 3.50m | material | 16.46 |
| Depth > 3.50m | material | 18.18 |
| Depth Between 0m to 1.50m | material | 13.23 |
| Depth Between 1.50m to 2.50m | material | 13.66 |
| Depth Between 2.50m to 3.50m | material | 17.69 |
| Depth > 3.50m | material | 18.52 |
| Depth Between 0m to 1.50m | material | 15.38 |
| Depth Between 1.50m to 2.50m | material | 16.23 |
| Depth Between 2.50m to 3.50m | material | 20.41 |
| Depth Between 3.50m to 4.50m | material | 21.44 |
| Depth > 4.50m | material | 22.16 |
| Depth Between 0m to 1.50m | material | 18.73 |
| Depth Between 1.50m to 2.50m | material | 19.81 |
| Depth Between 2.50m to 3.50m | material | 23.08 |
| Depth Between 3.50m to 4.50m | material | 23.94 |
| Depth > 4.50m | material | 24.85 |
| Depth Between 2.50m to 3.50m | material | 26.43 |
| Depth > 3.50m | material | 27.4 |
| Depth Between 0m to 1.50m | material | 24.59 |
| Depth Between 1.50m to 2.50m | material | 25.57 |
| Depth Between 2.50m to 3.50m | material | 29.69 |
| Depth > 3.50m | material | 30.72 |
| GRP Pipe, 900mm diameter with Depth Between 3.51m to 4.50m | material | 3436.21 |
| Single Catch Basin 1000mm x 1000mm | material | 230.77 |
| Double Catch Basin 1200mm x 2300mm | material | 301.78 |
| Depth Between 0m to 1.50m | material | 7.19 |
| Depth Between 1.50m to 2.50m | material | 7.67 |
| Depth > 2.50m | material | 11.77 |
| Depth Between 0m to 1.50m | material | 8.22 |
| Depth Between 1.50m to 2.50m | material | 8.82 |
| Depth Between 2.50m to 3.50m | material | 12.86 |
| Depth Between 3.50m to 4.50m | material | 13.66 |
| Depth Between 4.50m to 5.50m | material | 16.86 |
| Depth > 5.50m | material | 17.52 |
| HDPE Force Main (PE 100, SDR 11, PN 16 bar) DN 160 mm diameter, in trenches depth: 0- 1.5m | material | 8.99 |
| HDPE Force Main (PE 100, SDR 11, PN 16 bar) DN 160 mm diameter, in trenches depth: 1.51- 2.5m | material | 9.88 |
| Air valves with dia 50 mm | material | 284.02 |
| Gate valves Dia 50 mm | material | 53.25 |
| Air valve chamber (1000x 1000 mm) | material | 355.03 |
| Depth: 0 - 1.5m | material | 304.78 |
| Depth: 1.51 - 2.5m | material | 35.02 |
| Depth: 2.51 - 3.5m | material | 501.17 |
| Depth: 3.51 - 4.5m | material | 593.3 |
| Depth: 4.51 - 5.5m | material | 660.93 |
| Depth > 5.50m | material | 766.87 |
| Depth Between 0m to 1.50m | material | 2.15 |
| Depth Between 1.50m to 2.50m | material | 2.75 |
| Depth > 2.50m | material | 3.35 |
| Depth Between 0m to 1.50m | material | 3.18 |
| Depth Between 1.50m to 2.50m | material | 3.75 |
| Depth > 2.50m | material | 4.35 |
| Depth Between 0m to 1.50m | material | 4.35 |
| Depth Between 1.50m to 2.50m | material | 4.95 |
| Depth > 2.50m | material | 5.53 |
| Depth Between 0m to 1.50m | material | 8.13 |
| Depth Between 1.50m to 2.50m | material | 8.88 |
| Depth > 2.50m | material | 9.51 |
| Glass Fused Bolted (GLS) 1500 m3 Tank with associated accessories & manufacturer recommendation for the foundation | material | 18198.1 |
| Gate valves Dia 50 mm | material | 53.25 |
| Gate valves Dia 100 mm | material | 63.91 |
| Gate valves Dia 150 mm | material | 85.21 |
| Gate valves Dia 250 mm | material | 149.11 |
| Air valves with Dia 50 mm | material | 284.02 |
| Washout valve Dia 100 mm | material | 284.02 |
| Wash out chamber (2500x 2500mm) | material | 710.06 |
| Air valve chamber (1000x 1000 mm) | material | 355.03 |
| Flow meter chamber (1500x 2500 mm) | material | 710.06 |
| Flow meter dia 100 mm | material | 763.32 |
| pipe line O.D 32 mm PN 10, in depth 0 to 1.5 m | material | 0.89 |
| pipe line O.D 40 mm PN 10, in depth 0 to 1.5 m | material | 1.26 |
| pipe line O.D 50 mm PN 10, in depth 0 to 1.5 m | material | 1.78 |
| Gate valve 50 mm PN16 | material | 42.6 |
| Direct Burried Gate valve 40 mm PN16 | material | 42.6 |
| Pressure–compensating bubblers 110 Lit/Hr | material | 0.52 |
| Flushing Bronze gate valve dia 1.5" inside PVC box | material | 53.25 |
| Air release valve 1.5" inside PVC box | material | 53.25 |
| Extra flexible pressure compensating on surface inline dripline`s, O.D. is 16.1 mm | material | 0.43 |
| Electrical Solenoid Valve ( 1.5") inside PVC box | material | 42.6 |
| Electrical Solenoid Valve ( 2") inside PVC box | material | 53.25 |
| Quick coupling valve 1" inside a round valve box 10" size with a manual gate valve, hose swivel and key with all accessories | material | 88.76 |
| Advanced Irrigation controller subject to client approval, can connect with Centarl Control system and cabable to integrate with Smart City systems,BMS or Scada system ,Can record the real flow rate per stations | material | 887.58 |
| Decoder cables 12 AWG between valves and controllers, The cables shall be pulled through 32? UPVC conduit and inspection 10" round valve box every 100 meters, as per standard specification and drawings | material | 0.37 |
| Preparing the irrigation program for the entire system and providing technical services for monitoring and controlling the central irrigation systems by linking the controller with the Main Program System (by GSM). | material | 1065.09 |
| Excavation for Trench size 40cm wide and 80cm deep (for 1 cable) | material | 1.23 |
| Excavation for Trench Size 60cm wide and 80cm deep (for 2 cables) | material | 1.23 |
| Excavation for Trench Size 90cm wide and 80cm deep (for 3 cables) | material | 1.23 |
| Excavation for Trench Size 180cm wide and 80cm deep (for 6 cables) | material | 1.23 |
| Excavation for Trench Size 210 cm wide and 80cm deep (for 7 cables) | material | 1.23 |
| Excavation for Trench Size 240cm wide and 80cm deep (for 8 cables) | material | 1.23 |
| Duct bank for (33) cables | material | 63.99 |
| Duct bank for (21) cables | material | 42.55 |
| Duct bank for (15) cables | material | 31.87 |
| HV Cable Road Crossing | material | 18.44 |
| Lighting poles with 1 arm, height of (12) meters, including the power distribution box, cables, and RCC foundation. | material | 107.88 |
| Lighting poles with 2 arms, height of (12) meters, including the power distribution box, cables, and RCC foundation. | material | 129.33 |
| Street Lighting( LED) Luminaire of Output ? 20,965 lumen complete with control gear and lamp, (129.1) WATT. | material | 17.58 |
| Including earthing of lighting poles, masts, feeder pillars, unit substations and LV feeders. | material | 5.15 |
| Street Lighting panels LCP (01) | material | 708.92 |
| 2-ways ducts, 32mm diameter | material | 1.57 |
| 2x3-ways ducts, 50mm diameter | material | 2.26 |
| 8-ways ducts, 6 x 160mm & 2 x 100mm | material | 8.85 |
| 2 PVC ducts 150x200 mm (60mm diameter) | material | 1.43 |
| 4 PVC ducts 600x150 mm (60mm diameter) | material | 2.63 |
| 8 PVC ducts 1000x300 mm (60mm diameter) | material | 6.13 |
| 6 PVC ducts 600x800 mm (60mm diameter) | material | 7.33 |
| Manhole Type 2 (1600 x 1600 x 2000) | material | 145.48 |
| Manhole Type 3 (1200 x 1200 x 2000) | material | 137.32 |
| Manhole Type 1 (800 x 600 x 1200) | material | 87.76 |
| NVR Server with RAID (5, 6 or 10) to record all cameras storage 80TB with all hardware / software / licenses etc. | material | 2903.98 |
| VMS Server with RAID (5, 6 or 10) complete Hardware / Software with one Color Laser Printer and all associated accessories for central management. | material | 1659.43 |
| Licenses for Cameras, Workstations and Keyboards | material | 16524.8 |
| Work Station (MMI with two monitors each, for Monitoring for CCTV & ACS) | material | 662.05 |
| Keyboard with joystick for CCTV with all accessories as per specification | material | 179.26 |
| Pole mounted IP( PoE) Fixed camera, 5MP,IP 66, IR illumination, 3-8mm varifocal, auto iris lens type | material | 121.51 |
| Wall mounted IP( PoE) Fixed camera, 5MP,IP 66, IR illumination, 3-8mm varifocal, auto iris lens type | material | 121.51 |
| 5MP Dome camera ceiling Mounted IP (PoE) indoor | material | 123.63 |
| 5MP PTZ Multi Sensor Camera IP(PoE) 360 Degree View Outdoor with accessories (IP 66) | material | 537.33 |
| 8 Port Industrial PoE Switch 10/100BaseT (0 deg to +70 deg. Celsius) | material | 322.19 |
| Filed Equipment cabinet (FEC), with fan and ventilation, NEMEX 4X ,door, minimum size (600x600x400mm), the cabinet/enclosure includes industrial switch and UPS. | material | 191.2 |
| IP Phone Communication server (hot standby) 50 Port equipped, Gateway, Gatekeeper, H.323, SIP, redundant Power etc. | material | 1659.43 |
| IP Phone Voice gateway | material | 230.77 |
| Voice IP Phone | material | 53.25 |
| NMS Server for IP phone and NETWORK Elements | material | 1242.61 |
| NMS Workstation | material | 552.07 |
| Firm Ware, software & licenses | material | 887.58 |
| Data Cable | material | 124.26 |
| Power Cable | material | 53.25 |
| Layer 3, 24 Port non-PoE switch10/1000BaseT/LX (-40 deg to +70 deg. Celsius), stack module and associated accessories for utility Telecom Server room | material | 1246.64 |
| Layer 2, 24 Port non-PoE switch10/1000BaseT (-40 deg to +70 deg. Celsius), stack module and associated accessories for utility Telecom Server and Security Guard house room | material | 1246.64 |
| Network Management System Server | material | 3310 |
| Network Management System workstation | material | 662.05 |
| 42U rack dimension (W x H x L) 800 x 2000 x 1000 mm | material | 193.12 |
| 12U rack dimension (W x H x L) 600 x 625 x 600 mm | material | 82.77 |
| 06C Optical Fiber SM | material | 0.2 |
| 48C Optical Fiber SM | material | 0.86 |
| 48 Core Splice Closure | material | 38.65 |
| Optical fiber patch cord 5m | material | 4.44 |
| Data Cable (STP CAT 6A) | material | 0.14 |
| 3C Power Cable armored 1.5mm2 | material | 0.29 |
| 3C Power Cable armored 2.5 mm2 | material | 0.37 |
| UTP CAT6A Patch Cord 1m/3m/5m | material | 1.69 |
| Access Control Unit | material | 137.95 |
| Access Card Reader | material | 2.78 |
| Magnetic Lock | material | 66.22 |
| Break Glass | material | 11.05 |
| Exit Push button | material | 5.55 |
| Door Sensor | material | 5.55 |
| Biometrics Reader | material | 19.33 |
| Smart Card Printer | material | 275.86 |
| Card Issue Work Station | material | 441.35 |
| Photographic Camera with stand | material | 331.04 |
| Interface modules with CCTV, Fire and other systems | material | 1401.28 |
| 1-ways ducts, 6 x 50mm diameter | material | 3.32 |
| 6 PVC ducts 150x200 mm (60mm diameter) | material | 3.32 |
| Excavations (including Roads , Plots and Pond) | material | 0.23 |
| Embankments to the Site and Roads (including Roads , Plots and Pond) | material | 0.97 |
| Subgrade | material | 1.43 |
| Aggregate base course | material | 3.01 |
| Bituminous base course (Grading I - Class A), including Prime Coat (MC1) | material | 18.12 |
| Bituminous concrete wearing course, (Grading I - Class A), including tack coat (RC2) | material | 18.3 |
| 60mm thick | material | 1.98 |
| 80mm thick | material | 2.61 |
| Precast Concrete Curbstone 150X300X900 Type (K1-A) | material | 1.43 |
| Precast Concrete Curbstone 100X200X500 Type (K4) | material | 1.43 |
| Precast Concrete Curbstone 150X300X500 Type (K1-B) | material | 1.43 |
| Precast Concrete Curbstone Type (K1-C) | material | 1.43 |
| Flush Kerb Type (D) | material | 1.43 |
| Traffic signs, ground mounted, Sheet Aluminum, (breakaway) Single post IPE, with all accessories | material | 28.4 |
| Retroreflective Thermoplastic White Traffic lines | material | 1.26 |
| Retroreflective Thermoplastic Yellow, Traffic lines | material | 1.26 |
| Precast Concrete Blister Warning Tactile Paver Brown Finish 300*300*60mm | material | 5.33 |
| Depth Between 0m to 1.50m | material | 42.76 |
| Depth Between 1.50m to 2.50m | material | 48.77 |
| Depth Between 2.50m to 3.50m | material | 54.88 |
| Depth > 3.50m | material | 60.6 |
| Depth Between 0m to 1.50m | material | 44.09 |
| Depth Between 1.50m to 2.50m | material | 45.52 |
| Depth Between 2.50m to 3.50m | material | 58.98 |
| Depth > 3.50m | material | 61.75 |
| Depth Between 0m to 1.50m | material | 51.25 |
| Depth Between 1.50m to 2.50m | material | 54.11 |
| Depth Between 2.50m to 3.50m | material | 68.05 |
| Depth Between 3.50m to 4.50m | material | 71.48 |
| Depth > 4.50m | material | 73.87 |
| Depth Between 0m to 1.50m | material | 62.42 |
| Depth Between 1.50m to 2.50m | material | 66.04 |
| Depth Between 2.50m to 3.50m | material | 76.92 |
| Depth Between 3.50m to 4.50m | material | 79.79 |
| Depth > 4.50m | material | 82.84 |
| Depth Between 2.50m to 3.50m | material | 88.09 |
| Depth > 3.50m | material | 91.33 |
| Depth Between 0m to 1.50m | material | 81.98 |
| Depth Between 1.50m to 2.50m | material | 85.23 |
| Depth Between 2.50m to 3.50m | material | 98.97 |
| Depth > 3.50m | material | 102.41 |
| MH depth 1.5 - 2.5m | material | 1167.12 |
| MH depth 2.5 - 3.5m | material | 1670.55 |
| MH depth 3.5 - 4.5m | material | 1977.67 |
| MH depth > 4.50m | material | 2203.1 |
| MH depth 2.5 -3.5m | material | 2156.81 |
| MH depth > 3.50m | material | 2535.7 |
| GRP Pipe, 900mm diameter with Depth Between 3.51m to 4.50m | material | 11454 |
| Single Catch Basin 1000mm x 1000mm | material | 769.23 |
| Double Catch Basin 1200mm x 2300mm | material | 1005.92 |
| Finished grouted riprap for Pond 300mm as per drawings | material | 11.83 |
| Depth Between 0m to 1.50m | material | 23.95 |
| Depth Between 1.50m to 2.50m | material | 25.58 |
| Depth > 2.50m | material | 39.23 |
| Depth Between 0m to 1.50m | material | 27.39 |
| Depth Between 1.50m to 2.50m | material | 29.39 |
| Depth Between 2.50m to 3.50m | material | 42.85 |
| Depth Between 3.50m to 4.50m | material | 45.52 |
| Depth Between 4.50m to 5.50m | material | 56.21 |
| Depth > 5.50m | material | 58.41 |
| HDPE Force Main (PE 100, SDR 11, PN 16 bar) DN 160 mm diameter, in trenches depth: 0- 1.5m | material | 29.97 |
| HDPE Force Main (PE 100, SDR 11, PN 16 bar) DN 160 mm diameter, in trenches depth: 1.51- 2.5m | material | 32.93 |
| Air valves with dia 50 mm | material | 946.75 |
| Gate valves Dia 50 mm | material | 177.51 |
| Air valve chamber (1000x 1000 mm) | material | 1183.44 |
| Depth: 0 - 1.5m | material | 1015.94 |
| Depth: 1.51 - 2.5m | material | 116.72 |
| Depth: 2.51 - 3.5m | material | 1670.55 |
| Depth: 3.51 - 4.5m | material | 1977.67 |
| Depth: 4.51 - 5.5m | material | 2203.1 |
| Depth > 5.50m | material | 2556.22 |
| Depth Between 0m to 1.50m | material | 7.16 |
| Depth Between 1.50m to 2.50m | material | 9.16 |
| Depth > 2.50m | material | 11.17 |
| Depth Between 0m to 1.50m | material | 10.59 |
| Depth Between 1.50m to 2.50m | material | 12.5 |
| Depth > 2.50m | material | 14.51 |
| Depth Between 0m to 1.50m | material | 14.51 |
| Depth Between 1.50m to 2.50m | material | 16.51 |
| Depth > 2.50m | material | 18.42 |
| Depth Between 0m to 1.50m | material | 27.11 |
| Depth Between 1.50m to 2.50m | material | 29.59 |
| Depth > 2.50m | material | 31.69 |
| Gate valves Dia 50 mm | material | 177.51 |
| Gate valves Dia 100 mm | material | 213.02 |
| Gate valves Dia 150 mm | material | 284.02 |
| Gate valves Dia 250 mm | material | 497.04 |
| Air valves with Dia 50 mm | material | 946.75 |
| Washout valve Dia 100 mm | material | 946.75 |
| Wash out chamber (2500x 2500mm) | material | 2366.87 |
| Air valve chamber (1000x 1000 mm) | material | 1183.44 |
| Flow meter chamber (1500x 2500 mm) | material | 2366.87 |
| Flow meter dia 100 mm | material | 2544.39 |
| 3-outlet fire hydrant (2 x 2.5 inch and 1 x 4.5 inch) in the form of a separate dry vacuum cylinder, complete according to drawings. | material | 1124.26 |
| Glass Fused Bolted (GLS) 1500 m3 Tank with associated accessories & manufacturer recommendation for the foundation | material | 60660.3 |
| Excavation for Trench size 40cm wide and 80cm deep (for 1 cable) | material | 4.1 |
| Excavation for Trench Size 60cm wide and 80cm deep (for 2 cables) | material | 4.1 |
| Excavation for Trench Size 90cm wide and 80cm deep (for 3 cables) | material | 4.1 |
| Excavation for Trench Size 180cm wide and 80cm deep (for 6 cables) | material | 4.1 |
| Excavation for Trench Size 210 cm wide and 80cm deep (for 7 cables) | material | 4.1 |
| Excavation for Trench Size 240cm wide and 80cm deep (for 8 cables) | material | 4.1 |
| Duct bank for (33) cables | material | 213.31 |
| Duct bank for (21) cables | material | 141.82 |
| Duct bank for (15) cables | material | 106.22 |
| HV Cable Road Crossing | material | 61.46 |
| Street Lighting panels LCP (01) | material | 2363.05 |
| Lighting poles with 1 arm, height of (12) meters, including the power distribution box, cables, and RCC foundation. | material | 359.61 |
| Lighting poles with 2 arms, height of (12) meters, including the power distribution box, cables, and RCC foundation. | material | 431.1 |
| Street Lighting( LED) Luminaire of Output ? 20,965 lumen complete with control gear and lamp, (129.1) WATT. | material | 58.6 |
| Including earthing of lighting poles, masts, feeder pillars, unit substations and LV feeders. | material | 17.18 |
| Columns | material | 142.01 |
| 2-ways ducts, 32mm diameter | material | 5.25 |
| 2x3-ways ducts, 50mm diameter | material | 7.54 |
| 8-ways ducts, 6 x 160mm & 2 x 100mm | material | 29.49 |
| 2 PVC ducts 150x200 mm (60mm diameter) | material | 4.77 |
| 4 PVC ducts 600x150 mm (60mm diameter) | material | 8.78 |
| 8 PVC ducts 1000x300 mm (60mm diameter) | material | 20.42 |
| 6 PVC ducts 600x800 mm (60mm diameter) | material | 24.43 |
| Manhole Type 2 (1600 x 1600 x 2000) | material | 484.92 |
| Manhole Type 3 (1200 x 1200 x 2000) | material | 457.72 |
| Manhole Type 1 (800 x 600 x 1200) | material | 292.52 |
| NVR Server with RAID (5, 6 or 10) to record all cameras storage 80TB with all hardware / software / licenses etc. | material | 9679.93 |
| VMS Server with RAID (5, 6 or 10) complete Hardware / Software with one Color Laser Printer and all associated accessories for central management. | material | 5531.42 |
| Licenses for Cameras, Workstations and Keyboards | material | 55082.6 |
| Work Station (MMI with two monitors each, for Monitoring for CCTV & ACS) | material | 2206.82 |
| Keyboard with joystick for CCTV with all accessories as per specification | material | 597.54 |
| Pole mounted IP( PoE) Fixed camera, 5MP,IP 66, IR illumination, 3-8mm varifocal, auto iris lens type | material | 405.04 |
| Wall mounted IP( PoE) Fixed camera, 5MP,IP 66, IR illumination, 3-8mm varifocal, auto iris lens type | material | 405.04 |
| 5MP Dome camera ceiling Mounted IP (PoE) indoor | material | 412.1 |
| 5MP PTZ Multi Sensor Camera IP(PoE) 360 Degree View Outdoor with accessories (IP 66) | material | 1791.09 |
| 8 Port Industrial PoE Switch 10/100BaseT (0 deg to +70 deg. Celsius) | material | 1073.97 |
| Filed Equipment cabinet (FEC), with fan and ventilation, NEMEX 4X ,door, minimum size (600x600x400mm), the cabinet/enclosure includes industrial switch and UPS. | material | 637.34 |
| IP Phone Communication server (hot standby) 50 Port equipped, Gateway, Gatekeeper, H.323, SIP, redundant Power etc. | material | 5531.42 |
| IP Phone Voice gateway | material | 769.23 |
| Voice IP Phone | material | 177.51 |
| NMS Server for IP phone and NETWORK Elements | material | 4142.03 |
| NMS Workstation | material | 1840.24 |
| Firm Ware, software & licenses | material | 2958.59 |
| Data Cable | material | 414.2 |
| Power Cable | material | 177.51 |
| Layer 3, 24 Port non-PoE switch10/1000BaseT/LX (-40 deg to +70 deg. Celsius), stack module and associated accessories for utility Telecom Server room | material | 4155.48 |
| Layer 2, 24 Port non-PoE switch10/1000BaseT (-40 deg to +70 deg. Celsius), stack module and associated accessories for utility Telecom Server and Security Guard house room | material | 4155.48 |
| Network Management System Server | material | 11033.3 |
| Network Management System workstation | material | 2206.82 |
| 42U rack dimension (W x H x L) 800 x 2000 x 1000 mm | material | 643.73 |
| 12U rack dimension (W x H x L) 600 x 625 x 600 mm | material | 275.91 |
| 06C Optical Fiber SM | material | 0.67 |
| 48C Optical Fiber SM | material | 2.86 |
| 48 Core Splice Closure | material | 128.84 |
| Optical fiber patch cord 5m | material | 14.79 |
| Data Cable (STP CAT 6A) | material | 0.48 |
| 3C Power Cable armored 1.5mm2 | material | 0.95 |
| 3C Power Cable armored 2.5 mm2 | material | 1.24 |
| UTP CAT6A Patch Cord 1m/3m/5m | material | 5.63 |
| Access Control Unit | material | 459.82 |
| Access Card Reader | material | 9.26 |
| Magnetic Lock | material | 220.75 |
| Break Glass | material | 36.84 |
| Exit Push button | material | 18.52 |
| Door Sensor | material | 18.52 |
| Biometrics Reader | material | 64.42 |
| Smart Card Printer | material | 919.55 |
| Card Issue Work Station | material | 1471.18 |
| Photographic Camera with stand | material | 1103.46 |
| Interface modules with CCTV, Fire and other systems | material | 4670.94 |
| 1-ways ducts, 6 x 50mm diameter | material | 11.07 |
| 6 PVC ducts 150x200 mm (60mm diameter) | material | 11.07 |
| Excavations (including Roads , Plots and Pond) | material | 0.76 |
| Embankments to the Site and Roads (including Roads , Plots and Pond) | material | 3.25 |
| Subgrade | material | 4.77 |
| Aggregate base course | material | 10.02 |
| Bituminous base course (Grading I - Class A), including Prime Coat (MC1) | material | 60.41 |
| Bituminous concrete wearing course, (Grading I - Class A), including tack coat (RC2) | material | 60.98 |
| Precast Concrete Curbstone 150X300X900 Type (K1-A) | material | 4.77 |
| Precast Concrete Curbstone 100X200X500 Type (K4) | material | 4.77 |
| Precast Concrete Curbstone 150X300X500 Type (K1-B) | material | 4.77 |
| Precast Concrete Curbstone Type (K1-C) | material | 4.77 |
| Flush Kerb Type (D) | material | 4.77 |
| 60mm thick | material | 6.58 |
| 80mm thick | material | 8.69 |
| Retroreflective Thermoplastic White Traffic lines | material | 4.2 |
| Retroreflective Thermoplastic Yellow, Traffic lines | material | 4.2 |
| Traffic signs, ground mounted, Sheet Aluminum, (breakaway) Single post IPE, with all accessories | material | 94.67 |
| Precast Concrete Blister Warning Tactile Paver Brown Finish 300*300*60mm | material | 17.75 |
| 3-outlet fire hydrant (2 x 2.5 inch and 1 x 4.5 inch) in the form of a separate dry vacuum cylinder, complete according to drawings. | material | 337.28 |
| Skilled Labor | labor |  |
| Unskilled Labor | labor |  |
| Excavator | equipment |  |
| Depth Between 0m to 1.50m | material | 286.47 |
| Depth Between 1.50m to 2.50m | material | 326.75 |
| Depth Between 2.50m to 3.50m | material | 367.68 |
| Depth > 3.50m | material | 406.04 |
| Depth Between 0m to 1.50m | material | 295.42 |
| Depth Between 1.50m to 2.50m | material | 305.01 |
| Depth Between 2.50m to 3.50m | material | 395.17 |
| Depth > 3.50m | material | 413.72 |
| Depth Between 0m to 1.50m | material | 343.38 |
| Depth Between 1.50m to 2.50m | material | 362.56 |
| Depth Between 2.50m to 3.50m | material | 455.92 |
| Depth Between 3.50m to 4.50m | material | 478.94 |
| Depth > 4.50m | material | 494.92 |
| Depth Between 0m to 1.50m | material | 418.19 |
| Depth Between 1.50m to 2.50m | material | 442.49 |
| Depth Between 2.50m to 3.50m | material | 515.38 |
| Depth Between 3.50m to 4.50m | material | 534.57 |
| Depth > 4.50m | material | 555.03 |
| Depth Between 2.50m to 3.50m | material | 590.2 |
| Depth > 3.50m | material | 611.94 |
| Depth Between 0m to 1.50m | material | 549.28 |
| Depth Between 1.50m to 2.50m | material | 571.01 |
| Depth Between 2.50m to 3.50m | material | 663.1 |
| Depth > 3.50m | material | 686.11 |
| GRP Pipe, 900mm diameter with Depth Between 3.51m to 4.50m | material | 76742.1 |
| Plumber | labor |  |
| Water Tanker | equipment |  |
| Loader | equipment |  |
| Compactor | equipment |  |
| Depth Between 0m to 1.50m | material | 47.96 |
| Depth Between 1.50m to 2.50m | material | 61.39 |
| Depth > 2.50m | material | 74.81 |
| Depth Between 0m to 1.50m | material | 70.98 |
| Depth Between 1.50m to 2.50m | material | 83.76 |
| Depth > 2.50m | material | 97.2 |
| Depth Between 0m to 1.50m | material | 97.2 |
| Depth Between 1.50m to 2.50m | material | 110.62 |
| Depth > 2.50m | material | 123.41 |
| Depth Between 0m to 1.50m | material | 181.6 |
| Depth Between 1.50m to 2.50m | material | 198.23 |
| Depth > 2.50m | material | 212.3 |
| JCB | equipment |  |
| 3-outlet fire hydrant (2 x 2.5 inch and 1 x 4.5 inch) in the form of a separate dry vacuum cylinder, complete according to drawings. | material | 7532.57 |
| Electrician | labor |  |
| 2-ways ducts, 32mm diameter | material | 35.17 |
| 2x3-ways ducts, 50mm diameter | material | 50.52 |
| 8-ways ducts, 6 x 160mm & 2 x 100mm | material | 197.58 |
| 2 PVC ducts 150x200 mm (60mm diameter) | material | 31.97 |
| 4 PVC ducts 600x150 mm (60mm diameter) | material | 58.83 |
| 8 PVC ducts 1000x300 mm (60mm diameter) | material | 136.84 |
| 6 PVC ducts 600x800 mm (60mm diameter) | material | 163.69 |
| Mason | labor |  |
| Carpenter | labor |  |
| NVR Server with RAID (5, 6 or 10) to record all cameras storage 80TB with all hardware / software / licenses etc. | material | 64855.6 |
| VMS Server with RAID (5, 6 or 10) complete Hardware / Software with one Color Laser Printer and all associated accessories for central management. | material | 37060.5 |
| Licenses for Cameras, Workstations and Keyboards | material | 369053 |
| Work Station (MMI with two monitors each, for Monitoring for CCTV & ACS) | material | 14785.7 |
| Keyboard with joystick for CCTV with all accessories as per specification | material | 4003.52 |
| Pole mounted IP( PoE) Fixed camera, 5MP,IP 66, IR illumination, 3-8mm varifocal, auto iris lens type | material | 2713.77 |
| Wall mounted IP( PoE) Fixed camera, 5MP,IP 66, IR illumination, 3-8mm varifocal, auto iris lens type | material | 2713.77 |
| 5MP Dome camera ceiling Mounted IP (PoE) indoor | material | 2761.09 |
| 5MP PTZ Multi Sensor Camera IP(PoE) 360 Degree View Outdoor with accessories (IP 66) | material | 12000.3 |
| 8 Port Industrial PoE Switch 10/100BaseT (0 deg to +70 deg. Celsius) | material | 7195.59 |
| Filed Equipment cabinet (FEC), with fan and ventilation, NEMEX 4X ,door, minimum size (600x600x400mm), the cabinet/enclosure includes industrial switch and UPS. | material | 4270.16 |
| IP Phone Communication server (hot standby) 50 Port equipped, Gateway, Gatekeeper, H.323, SIP, redundant Power etc. | material | 37060.5 |
| IP Phone Voice gateway | material | 5153.86 |
| Voice IP Phone | material | 1189.35 |
| NMS Server for IP phone and NETWORK Elements | material | 27751.6 |
| NMS Workstation | material | 12329.6 |
| Firm Ware, software & licenses | material | 19822.5 |
| Data Cable | material | 2775.16 |
| Power Cable | material | 1189.35 |
| Layer 3, 24 Port non-PoE switch10/1000BaseT/LX (-40 deg to +70 deg. Celsius), stack module and associated accessories for utility Telecom Server room | material | 27841.7 |
| Layer 2, 24 Port non-PoE switch10/1000BaseT (-40 deg to +70 deg. Celsius), stack module and associated accessories for utility Telecom Server and Security Guard house room | material | 27841.7 |
| Network Management System Server | material | 73923.4 |
| Network Management System workstation | material | 14785.7 |
| 42U rack dimension (W x H x L) 800 x 2000 x 1000 mm | material | 4313 |
| 12U rack dimension (W x H x L) 600 x 625 x 600 mm | material | 1848.61 |
| 06C Optical Fiber SM | material | 4.48 |
| 48C Optical Fiber SM | material | 19.18 |
| 48 Core Splice Closure | material | 863.24 |
| Optical fiber patch cord 5m | material | 99.11 |
| Data Cable (STP CAT 6A) | material | 3.2 |
| 3C Power Cable armored 1.5mm2 | material | 6.39 |
| 3C Power Cable armored 2.5 mm2 | material | 8.31 |
| UTP CAT6A Patch Cord 1m/3m/5m | material | 37.73 |
| Access Control Unit | material | 3080.81 |
| Access Card Reader | material | 62.03 |
| Magnetic Lock | material | 1479.02 |
| Break Glass | material | 246.82 |
| Exit Push button | material | 124.05 |
| Door Sensor | material | 124.05 |
| Biometrics Reader | material | 431.62 |
| Smart Card Printer | material | 6160.98 |
| Card Issue Work Station | material | 9856.93 |
| Photographic Camera with stand | material | 7393.18 |
| Interface modules with CCTV, Fire and other systems | material | 31295.3 |
| 1-ways ducts, 6 x 50mm diameter | material | 74.18 |
| 6 PVC ducts 150x200 mm (60mm diameter) | material | 74.18 |
| Manhole Type 3 (1200 x 1200 x 2000) | material | 3066.74 |
| Manhole Type 1 (800 x 600 x 1200) | material | 1959.88 |
| Boom Truck | equipment |  |
| Dozer | equipment |  |
| Excavations (including Roads , Plots and Pond) | material | 7.64 |
| Embankments to the Site and Roads (including Roads , Plots and Pond) | material | 32.45 |
| Gate valves Dia 50 mm | material | 1189.35 |
| Gate valves Dia 100 mm | material | 1427.22 |
| Gate valves Dia 150 mm | material | 1902.97 |
| Gate valves Dia 250 mm | material | 3330.19 |
| Air valves with Dia 50 mm | material | 6343.22 |
| Washout valve Dia 100 mm | material | 6343.22 |
| Wash out chamber (2500x 2500mm) | material | 15858 |
| Air valve chamber (1000x 1000 mm) | material | 7929.02 |
| Flow meter chamber (1500x 2500 mm) | material | 15858 |
| Flow meter dia 100 mm | material | 17047.4 |
| MH depth 1.5 - 2.5m | material | 2334.23 |
| MH depth 2.5 - 3.5m | material | 3341.11 |
| MH depth 3.5 - 4.5m | material | 3955.35 |
| MH depth > 4.50m | material | 4406.2 |
| MH depth 2.5 -3.5m | material | 4313.62 |
| MH depth > 3.50m | material | 5071.4 |
| Depth Between 0m to 1.50m | material | 85.51 |
| Depth Between 1.50m to 2.50m | material | 97.54 |
| Depth Between 2.50m to 3.50m | material | 109.75 |
| Depth > 3.50m | material | 121.21 |
| Depth Between 0m to 1.50m | material | 88.19 |
| Depth Between 1.50m to 2.50m | material | 91.05 |
| Depth Between 2.50m to 3.50m | material | 117.96 |
| Depth > 3.50m | material | 123.5 |
| Depth Between 0m to 1.50m | material | 102.5 |
| Depth Between 1.50m to 2.50m | material | 108.23 |
| Depth Between 2.50m to 3.50m | material | 136.1 |
| Depth Between 3.50m to 4.50m | material | 142.97 |
| Depth > 4.50m | material | 147.74 |
| Depth Between 0m to 1.50m | material | 124.83 |
| Depth Between 1.50m to 2.50m | material | 132.09 |
| Depth Between 2.50m to 3.50m | material | 153.85 |
| Depth Between 3.50m to 4.50m | material | 159.57 |
| Depth > 4.50m | material | 165.68 |
| Depth Between 2.50m to 3.50m | material | 176.18 |
| Depth > 3.50m | material | 182.67 |
| Depth Between 0m to 1.50m | material | 163.96 |
| Depth Between 1.50m to 2.50m | material | 170.45 |
| Depth Between 2.50m to 3.50m | material | 197.94 |
| Depth > 3.50m | material | 204.81 |
| GRP Pipe, 900mm diameter with Depth Between 3.51m to 4.50m | material | 22908.1 |
| Single Catch Basin 1000mm x 1000mm | material | 1538.47 |
| Double Catch Basin 1200mm x 2300mm | material | 2011.84 |
| Depth Between 0m to 1.50m | material | 47.91 |
| Depth Between 1.50m to 2.50m | material | 51.15 |
| Depth > 2.50m | material | 78.45 |
| Depth Between 0m to 1.50m | material | 54.78 |
| Depth Between 1.50m to 2.50m | material | 58.79 |
| Depth Between 2.50m to 3.50m | material | 85.7 |
| Depth Between 3.50m to 4.50m | material | 91.05 |
| Depth Between 4.50m to 5.50m | material | 112.43 |
| Depth > 5.50m | material | 116.82 |
| HDPE Force Main (PE 100, SDR 11, PN 16 bar) DN 160 mm diameter, in trenches depth: 0- 1.5m | material | 59.94 |
| HDPE Force Main (PE 100, SDR 11, PN 16 bar) DN 160 mm diameter, in trenches depth: 1.51- 2.5m | material | 65.85 |
| Air valves with dia 50 mm | material | 1893.5 |
| Gate valves Dia 50 mm | material | 355.03 |
| Air valve chamber (1000x 1000 mm) | material | 2366.87 |
| Depth: 0 - 1.5m | material | 2031.88 |
| Depth: 1.51 - 2.5m | material | 233.44 |
| Depth: 2.51 - 3.5m | material | 3341.11 |
| Depth: 3.51 - 4.5m | material | 3955.35 |
| Depth: 4.51 - 5.5m | material | 4406.2 |
| Depth > 5.50m | material | 5112.44 |
| Depth Between 0m to 1.50m | material | 14.32 |
| Depth Between 1.50m to 2.50m | material | 18.32 |
| Depth > 2.50m | material | 22.33 |
| Depth Between 0m to 1.50m | material | 21.19 |
| Depth Between 1.50m to 2.50m | material | 25 |
| Depth > 2.50m | material | 29.01 |
| Depth Between 0m to 1.50m | material | 29.01 |
| Depth Between 1.50m to 2.50m | material | 33.02 |
| Depth > 2.50m | material | 36.84 |
| Depth Between 0m to 1.50m | material | 54.21 |
| Depth Between 1.50m to 2.50m | material | 59.17 |
| Depth > 2.50m | material | 63.37 |
| Glass Fused Bolted (GLS) 1500 m3 Tank with associated accessories & manufacturer recommendation for the foundation | material | 121321 |
| Gate valves Dia 50 mm | material | 355.03 |
| Gate valves Dia 100 mm | material | 426.04 |
| Gate valves Dia 150 mm | material | 568.05 |
| Gate valves Dia 250 mm | material | 994.09 |
| Air valves with Dia 50 mm | material | 1893.5 |
| Washout valve Dia 100 mm | material | 1893.5 |
| Wash out chamber (2500x 2500mm) | material | 4733.74 |
| Air valve chamber (1000x 1000 mm) | material | 2366.87 |
| Flow meter chamber (1500x 2500 mm) | material | 4733.74 |
| Flow meter dia 100 mm | material | 5088.77 |
| pipe line O.D 32 mm PN 10, in depth 0 to 1.5 m | material | 5.92 |
| pipe line O.D 40 mm PN 10, in depth 0 to 1.5 m | material | 8.4 |
| pipe line O.D 50 mm PN 10, in depth 0 to 1.5 m | material | 11.83 |
| Gate valve 50 mm PN16 | material | 284.02 |
| Direct Burried Gate valve 40 mm PN16 | material | 284.02 |
| Pressure–compensating bubblers 110 Lit/Hr | material | 3.44 |
| Flushing Bronze gate valve dia 1.5" inside PVC box | material | 355.03 |
| Air release valve 1.5" inside PVC box | material | 355.03 |
| Extra flexible pressure compensating on surface inline dripline`s, O.D. is 16.1 mm | material | 2.86 |
| Electrical Solenoid Valve ( 1.5") inside PVC box | material | 284.02 |
| Electrical Solenoid Valve ( 2") inside PVC box | material | 355.03 |
| Quick coupling valve 1" inside a round valve box 10" size with a manual gate valve, hose swivel and key with all accessories | material | 591.72 |
| Advanced Irrigation controller subject to client approval, can connect with Centarl Control system and cabable to integrate with Smart City systems,BMS or Scada system ,Can record the real flow rate per stations | material | 5917.18 |
| Decoder cables 12 AWG between valves and controllers, The cables shall be pulled through 32? UPVC conduit and inspection 10" round valve box every 100 meters, as per standard specification and drawings | material | 2.48 |
| Preparing the irrigation program for the entire system and providing technical services for monitoring and controlling the central irrigation systems by linking the controller with the Main Program System (by GSM). | material | 7100.62 |
| Excavation for Trench size 40cm wide and 80cm deep (for 1 cable) | material | 8.21 |
| Excavation for Trench Size 60cm wide and 80cm deep (for 2 cables) | material | 8.21 |
| Excavation for Trench Size 90cm wide and 80cm deep (for 3 cables) | material | 8.21 |
| Excavation for Trench Size 180cm wide and 80cm deep (for 6 cables) | material | 8.21 |
| Excavation for Trench Size 210 cm wide and 80cm deep (for 7 cables) | material | 8.21 |
| Excavation for Trench Size 240cm wide and 80cm deep (for 8 cables) | material | 8.21 |
| Duct bank for (33) cables | material | 426.61 |
| Duct bank for (21) cables | material | 283.64 |
| Duct bank for (15) cables | material | 212.45 |
| HV Cable Road Crossing | material | 122.92 |
| Lighting poles with 1 arm, height of (12) meters, including the power distribution box, cables, and RCC foundation. | material | 719.22 |
| Lighting poles with 2 arms, height of (12) meters, including the power distribution box, cables, and RCC foundation. | material | 862.19 |
| Street Lighting( LED) Luminaire of Output ? 20,965 lumen complete with control gear and lamp, (129.1) WATT. | material | 117.2 |
| Including earthing of lighting poles, masts, feeder pillars, unit substations and LV feeders. | material | 34.36 |
| Street Lighting panels LCP (01) | material | 4726.11 |
| 2-ways ducts, 32mm diameter | material | 10.5 |
| 2x3-ways ducts, 50mm diameter | material | 15.08 |
| 8-ways ducts, 6 x 160mm & 2 x 100mm | material | 58.98 |
| 2 PVC ducts 150x200 mm (60mm diameter) | material | 9.54 |
| 4 PVC ducts 600x150 mm (60mm diameter) | material | 17.56 |
| 8 PVC ducts 1000x300 mm (60mm diameter) | material | 40.85 |
| 6 PVC ducts 600x800 mm (60mm diameter) | material | 48.86 |
| Manhole Type 2 (1600 x 1600 x 2000) | material | 969.84 |
| Manhole Type 3 (1200 x 1200 x 2000) | material | 915.44 |
| Manhole Type 1 (800 x 600 x 1200) | material | 585.04 |
| NVR Server with RAID (5, 6 or 10) to record all cameras storage 80TB with all hardware / software / licenses etc. | material | 19359.9 |
| VMS Server with RAID (5, 6 or 10) complete Hardware / Software with one Color Laser Printer and all associated accessories for central management. | material | 11062.8 |
| Licenses for Cameras, Workstations and Keyboards | material | 110165 |
| Work Station (MMI with two monitors each, for Monitoring for CCTV & ACS) | material | 4413.64 |
| Keyboard with joystick for CCTV with all accessories as per specification | material | 1195.08 |
| Pole mounted IP( PoE) Fixed camera, 5MP,IP 66, IR illumination, 3-8mm varifocal, auto iris lens type | material | 810.08 |
| Wall mounted IP( PoE) Fixed camera, 5MP,IP 66, IR illumination, 3-8mm varifocal, auto iris lens type | material | 810.08 |
| 5MP Dome camera ceiling Mounted IP (PoE) indoor | material | 824.21 |
| 5MP PTZ Multi Sensor Camera IP(PoE) 360 Degree View Outdoor with accessories (IP 66) | material | 3582.18 |
| 8 Port Industrial PoE Switch 10/100BaseT (0 deg to +70 deg. Celsius) | material | 2147.94 |
| Filed Equipment cabinet (FEC), with fan and ventilation, NEMEX 4X ,door, minimum size (600x600x400mm), the cabinet/enclosure includes industrial switch and UPS. | material | 1274.68 |
| IP Phone Communication server (hot standby) 50 Port equipped, Gateway, Gatekeeper, H.323, SIP, redundant Power etc. | material | 11062.8 |
| IP Phone Voice gateway | material | 1538.47 |
| Voice IP Phone | material | 355.03 |
| NMS Server for IP phone and NETWORK Elements | material | 8284.05 |
| NMS Workstation | material | 3680.49 |
| Firm Ware, software & licenses | material | 5917.18 |
| Data Cable | material | 828.41 |
| Power Cable | material | 355.03 |
| Layer 3, 24 Port non-PoE switch10/1000BaseT/LX (-40 deg to +70 deg. Celsius), stack module and associated accessories for utility Telecom Server room | material | 8310.97 |
| Layer 2, 24 Port non-PoE switch10/1000BaseT (-40 deg to +70 deg. Celsius), stack module and associated accessories for utility Telecom Server and Security Guard house room | material | 8310.97 |
| Network Management System Server | material | 22066.7 |
| Network Management System workstation | material | 4413.64 |
| 42U rack dimension (W x H x L) 800 x 2000 x 1000 mm | material | 1287.46 |
| 12U rack dimension (W x H x L) 600 x 625 x 600 mm | material | 551.82 |
| 06C Optical Fiber SM | material | 1.34 |
| 48C Optical Fiber SM | material | 5.73 |
| 48 Core Splice Closure | material | 257.68 |
| Optical fiber patch cord 5m | material | 29.59 |
| Data Cable (STP CAT 6A) | material | 0.95 |
| 3C Power Cable armored 1.5mm2 | material | 1.91 |
| 3C Power Cable armored 2.5 mm2 | material | 2.48 |
| UTP CAT6A Patch Cord 1m/3m/5m | material | 11.26 |
| Access Control Unit | material | 919.64 |
| Access Card Reader | material | 18.52 |
| Magnetic Lock | material | 441.5 |
| Break Glass | material | 73.68 |
| Exit Push button | material | 37.03 |
| Door Sensor | material | 37.03 |
| Biometrics Reader | material | 128.84 |
| Smart Card Printer | material | 1839.1 |
| Card Issue Work Station | material | 2942.37 |
| Photographic Camera with stand | material | 2206.92 |
| Interface modules with CCTV, Fire and other systems | material | 9341.89 |
| 1-ways ducts, 6 x 50mm diameter | material | 22.14 |
| 6 PVC ducts 150x200 mm (60mm diameter) | material | 22.14 |
| 60mm thick | material | 13.17 |
| 80mm thick | material | 17.37 |
| Precast Concrete Curbstone 150X300X900 Type (K1-A) | material | 9.54 |
| Precast Concrete Curbstone 100X200X500 Type (K4) | material | 9.54 |
| Precast Concrete Curbstone 150X300X500 Type (K1-B) | material | 9.54 |
| Precast Concrete Curbstone Type (K1-C) | material | 9.54 |
| Flush Kerb Type (D) | material | 9.54 |
| Traffic signs, ground mounted, Sheet Aluminum, (breakaway) Single post IPE, with all accessories | material | 189.35 |
| Retroreflective Thermoplastic White Traffic lines | material | 8.4 |
| Retroreflective Thermoplastic Yellow, Traffic lines | material | 8.4 |
| Precast Concrete Blister Warning Tactile Paver Brown Finish 300*300*60mm | material | 35.5 |
| 3-outlet fire hydrant (2 x 2.5 inch and 1 x 4.5 inch) in the form of a separate dry vacuum cylinder, complete according to drawings. | material | 2248.53 |
| 100 mm thickness lean concrete under the foundation | material | 12.43 |
| Foundation | material | 42.6 |
| Grade Beams | material | 42.6 |
| Slab on grade | material | 42.6 |
| Beams | material | 42.6 |
| Columns | material | 42.6 |
| Slabs | material | 42.6 |
| Lightweight Concrete Roof insulation as per Architect's specification | material | 1.6 |
| Hollow Concrete masonry unit, 150 mm thick wall for internal block | material | 3.55 |
| Insulated brickwork. with expanded polystyrene 200mm thick for External block | material | 3.92 |
| Hollow Concrete masonry unit, 300 mm thick wall for External block | material | 4.27 |
| 2 perpendicular layers of cold bitumen coats | material | 0.37 |
| 2 layer of 4mm HDPE membrane, 2 perpendicular layers cold bitumen coats | material | 1.6 |
| 1 layer EPOXY Paint 300 micron | material | 1.43 |
| Membrane fully bonded to prime deck and upstand | material | 1.6 |
| Geotextile Filter membrane uv resistance | material | 0.2 |
| 85mm thick thermal insulation | material | 1.26 |
| 1.5mm thick epdm waterproofing membrane | material | 1.09 |
| D1 - 1100 mm width x 2200 mm height | material | 94.51 |
| D4 - 1800 mm width x 3000 mm height | material | 210.9 |
| 1000 mm width x 2400 mm high (L1) | material | 85.21 |
| Supply and install External plastering to walls and columns min. 15mm thick with cement mortar of specified grade including galvanized mesh, corner beads, angle beads, CE bonds to rough and smooth plaster complete the work as per drawing & specification. | material | 1.09 |
| Supply and install 2 coats of weatherproof paint at walls including one prime coat and two coats and putty to give smooth Surface as a base for paint including fiberglass tape to joints and all other accessories as per manufacturers approved specification | material | 1.43 |
| Supply and install internal plastering to walls and columns min. 15mm thick with cement mortar of specified grade including galvanized mesh, corner beads, angle beads, CE bonds to rough and smooth plaster complete the work as per drawing & specification. | material | 1.09 |
| Supply and install 2 coats of epoxy paint at walls including one prime coat and two coats and putty to give smooth Surface as a base for paint including fiberglass tape to joints and all other accessories as per manufacturers approved specification | material | 1.43 |
| Supply and install 300*300mm glazed ceramic wall tiles on cement mortar and including rough and smooth plaster, galvanized mesh, corner beads, angle beads, CE bonds | material | 2.15 |
| Acid Proof Tiles | material |  |
| Supply and install 600*600mm porcelain tiles with approved quality on 30 mm mortar including sand fill material as approved by the Client | material | 2.15 |
| Supply and install 12.5mm thk, gypsum board suspended ceiling including suspension system, paints as required specification and material as approved by the Client including frames supports, access openings and all other accessories to complete as shown in | material | 2.86 |
| 4.5 KG CO2 Type Fire Extinguishers | material | 124.26 |
| 6 KG ABC Type Fire Extinguishers | material | 88.76 |
| 15 mm dia. | material | 2.86 |
| 25 mm dia. | material | 3.55 |
| 32 mm dia. | material | 4.27 |
| 40 mm dia. | material | 5.33 |
| 80 mm dia. | material | 7.1 |
| 200 mm dia. | material | 8.88 |
| 250 mm dia. | material | 12.43 |
| 20 mm | material | 44.38 |
| 25 mm | material | 55.32 |
| 32 mm | material | 68.17 |
| 40 mm | material | 95.17 |
| 50 mm | material | 138.35 |
| 100 mm | material | 124.26 |
| 150 mm | material | 184.99 |
| 200 mm | material | 607.82 |
| 250 mm | material | 756.22 |
| 100 mm | material | 176.11 |
| 150 mm | material | 317.75 |
| 200 mm | material | 621.3 |
| Altitude control valve assembly, size 200 mm | material | 6727.83 |
| Supply, install, connection, testing and commssionigs horizontal bladder type pressure tank with capacity 1500 liter according to manufacturer's detail and specification - PS-PT-1 | material | 11361 |
| Supply, install, connection, testing and commssionigs horizontal bladder type pressure tank with capacity 300 liter according to manufacturer's detail and specification - PS-PT-2 | material | 4260.37 |
| Chemical DosingTank (CDT) 6000 liters capacity polytheylene tank With pump assembly. | material | 17041.5 |
| Actual capacity 1.5 Ton | material | 106.51 |
| Actual capacity 2.0 Ton | material | 1597.64 |
| Air Flow 280 l/s @ 150 pa | material | 26.63 |
| Air Flow 3200 l/s @ 100 pa | material | 53.25 |
| Air Flow 110 l/s @ 50 pa | material | 23.08 |
| Air Flow 70 l/s @ 50 pa | material | 19.53 |
| Air Flow 35 l/s @ 35 pa | material | 17.75 |
| Air Flow 105 l/s @ 50 pa | material | 21.3 |
| Air Flow 180 l/s @ 0.01 pa | material | 26.63 |
| Galvanized sheet metal ducts | material | 3.55 |
| Supply Liner Slot diffuser 3 slots 1 inch | material | 15.98 |
| Return Liner Slot diffuser 3 slots 1 inch | material | 15.98 |
| Exhaust Grill 150mm x 150mm | material | 15.98 |
| Sand trap louver 2400mm x 1000mm | material | 88.76 |
| Sound attenuator size 1050 x 650 x 1000 m | material | 35.5 |
| Pump Set for FF Supply (FP01.FP02) | material | 9085.24 |
| Pump Set for Domestic Supply (BP01 / BP02) | material | 4082.85 |
| Pump Set for Irrigation Supply (IRR01 / IRR02) | material | 6935.53 |
| Pump Set for Drainage System | material | 7318.96 |
| Pump Set for SW Force Main (1W+1S) | material | 2411.37 |
| acoustical tiles suspended ceiling 600x600mm concealed metal | material | 3.55 |
| Finished grouted riprap for Pond 300mm as per drawings | material | 3.55 |
| 100 mm thickness lean concrete under the foundation | material | 82.84 |
| Foundation | material | 284.02 |
| Walls | material | 307.69 |
| Beams | material | 284.02 |
| Slabs | material | 284.02 |
| Lightweight Concrete Roof insulation as per Architect's specification | material | 10.69 |
| 2 perpendicular layers of cold bitumen coats | material | 2.48 |
| 2 layer of 4mm HDPE membrane, 2 perpendicular layers cold bitumen coats | material | 10.69 |
| 1 layer EPOXY Paint 300 micron | material | 9.54 |
| Membrane fully bonded to prime deck and upstand | material | 10.69 |
| Geotextile Filter membrane uv resistance | material | 1.34 |
| 85mm thick thermal insulation | material | 8.4 |
| 1.5mm thick epdm waterproofing membrane | material | 7.25 |
| Supply and install External plastering to walls and columns min. 15mm thick with cement mortar of specified grade including galvanized mesh, corner beads, angle beads, CE bonds to rough and smooth plaster complete the work as per drawing & specification. | material | 7.25 |
| Supply and install 2 coats of weatherproof paint at walls including one prime coat and two coats and putty to give smooth Surface as a base for paint including fiberglass tape to joints and all other accessories as per manufacturers approved specification | material | 9.54 |
| Supply and install internal plastering to walls and columns min. 15mm thick with cement mortar of specified grade including galvanized mesh, corner beads, angle beads, CE bonds to rough and smooth plaster complete the work as per drawing & specification. | material | 7.25 |
| Supply and install 300*300mm glazed ceramic wall tiles on cement mortar and including rough and smooth plaster, galvanized mesh, corner beads, angle beads, CE bonds | material | 14.32 |
| Finished grouted riprap for Pond 300mm as per drawings | material | 23.67 |
| Excavations (including Roads , Plots and Pond) | material | 1.53 |
| Embankments to the Site and Roads (including Roads , Plots and Pond) | material | 6.49 |
| Subgrade | material | 9.54 |
| Aggregate base course | material | 20.04 |
| Bituminous base course (Grading I - Class A), including Prime Coat (MC1) | material | 120.82 |
| Finished grouted riprap for Pond 300mm as per drawings | material | 79.29 |
| pipe line O.D 32 mm PN 10, in depth 0 to 1.5 m | material | 2.96 |
| pipe line O.D 40 mm PN 10, in depth 0 to 1.5 m | material | 4.2 |
| pipe line O.D 50 mm PN 10, in depth 0 to 1.5 m | material | 5.92 |
| Gate valve 50 mm PN16 | material | 142.01 |
| Direct Burried Gate valve 40 mm PN16 | material | 142.01 |
| Pressure–compensating bubblers 110 Lit/Hr | material | 1.72 |
| Flushing Bronze gate valve dia 1.5" inside PVC box | material | 177.51 |
| Air release valve 1.5" inside PVC box | material | 177.51 |
| Extra flexible pressure compensating on surface inline dripline`s, O.D. is 16.1 mm | material | 1.43 |
| Electrical Solenoid Valve ( 1.5") inside PVC box | material | 142.01 |
| Electrical Solenoid Valve ( 2") inside PVC box | material | 177.51 |
| Quick coupling valve 1" inside a round valve box 10" size with a manual gate valve, hose swivel and key with all accessories | material | 295.86 |
| Advanced Irrigation controller subject to client approval, can connect with Centarl Control system and cabable to integrate with Smart City systems,BMS or Scada system ,Can record the real flow rate per stations | material | 2958.59 |
| Decoder cables 12 AWG between valves and controllers, The cables shall be pulled through 32? UPVC conduit and inspection 10" round valve box every 100 meters, as per standard specification and drawings | material | 1.24 |
| Preparing the irrigation program for the entire system and providing technical services for monitoring and controlling the central irrigation systems by linking the controller with the Main Program System (by GSM). | material | 3550.31 |
| 100 mm thickness lean concrete under the foundation | material | 41.42 |
| Foundation | material | 88.76 |
| Slab on Grade | material | 76.92 |
| Walls | material | 153.85 |
| Beams | material | 165.68 |
| Columns | material | 177.51 |
| Slabs | material | 130.18 |
| Lightweight Concrete Roof insulation as per Architect's specification | material | 5.34 |
| Common brickwork. 300mm thick; vertical straight wall complete with accessories. | material | 14.22 |
| Insulated brickwork. with expanded polystyrene 200mm thick; vertical straight wall complete with accessories . | material | 13.07 |
| Common brickwork. 150mm thick; vertical straight wall complete with accessories. | material | 10.69 |
| Two Layers of Bituminous Coating | material | 1.24 |
| 20x20 Approved Polysulfide Joint Sealant | material | 2.39 |
| 2 perpendicular layers of cold bitumen coats | material | 1.24 |
| 2 layer of 4mm HDPE membrane, 2 perpendicular layers cold bitumen coats | material | 5.92 |
| 1 layer EPOXY Paint 300 micron | material | 7.16 |
| Membrane fully bonded to prime deck and upstand | material | 5.34 |
| Geotextile Filter membrane uv resistance | material | 0.67 |
| 85mm thick thermal insulation | material | 3.63 |
| 1.5mm thick epdm waterproofing membrane | material | 2.39 |
| CW01 - 1000 mm width x 2000 mm height | material | 201.18 |
| CW02 - 2000 mm width x 2000 mm height | material | 402.37 |
| D2 - 900 mm x 2200 mm height temper door | material | 213.02 |
| Supply and install 33mm thick Lexan cladding blue complete with necessary framings & accessories all as per manufacturer's & architectural drawing. | material | 41.42 |
| Supply and install 50mm thick random cut stone cladding complete with 600mm x 50mm thick coping, necessary framings, slotted anchor connection, steel tube framing, aluminum angles all necessary fittings & accessories as per manufacturer's detail & archite | material | 33.21 |
| Supply and install External plastering to walls and columns min. 15mm thick with cement mortar of specified grade including galvanized mesh, corner beads, angle beads, CE bonds to rough and smooth plaster complete the work as per drawing & specification. | material | 3.63 |
| Supply and install 2 coats of weatherproof paint at walls including one prime coat and two coats and putty to give smooth Surface as a base for paint including fiberglass tape to joints and all other accessories as per manufacturers approved specification | material | 4.2 |
| Supply and install 300*300mm terrazzo tiles with 150mm high skirting at perimeter with approved quality on 30 mm mortar including sand fill material as approved by the Client (For Roof) | material | 8.3 |
| Supply and install 300*300mm glazed ceramic wall tiles on cement mortar and including rough and smooth plaster, galvanized mesh, corner beads, angle beads, CE bonds (For Toilets) | material | 10.69 |
| Supply and install internal plastering and 2 coats of acrylic paint at walls including one coat of primer & two coats of putty to give smooth finish | material | 3.63 |
| Supply and install 300*300mm glazed ceramic wall tiles on cement mortar and including rough and smooth plaster, galvanized mesh, corner beads, angle beads, CE bonds (For Toilets) | material | 9.54 |
| Supply and install 600*600mm porcelain tiles with approved quality on 30 mm mortar including sand fill material as approved by the Client (for Security Area) | material | 9.54 |
| Supply and install 12.5mm thk, gypsum board suspended ceiling including suspension system, paints as required specification and material as approved by the Client including frames supports, access openings and all other accessories to complete as shown in | material | 9.54 |
| Guard room coping 350mm | material | 14.22 |
| Guard room coping 450mm | material | 18.99 |
| Stone coping 500mm | material | 20.71 |
| Stone coping 525mm | material | 21.38 |
| Supply and install MODON Signage with Logo Type 1 | material | 1183.44 |
| Supply and install MODON Signage Type 2 | material | 1183.44 |
| Supply and install "Triangle Style" signage | material | 236.69 |
| Office Chairs | material | 94.67 |
| Office Tables | material | 142.01 |
| Guard Stand | material | 591.72 |
| Magnetic Control Access barrier, Automatic Vehicular Barriers to be installed on ground with magnetic access | material | 2366.87 |
| Supply and install Hand Wash Basin with Water Tap, angle valve, P-trap connected to 50mm diameter sanitary pipe fittings chased to wall. | material | 213.02 |
| Supply and install paper towel dispenser, surface mounted, satin finish stainless steel as per approved sample including accessories. | material | 11.83 |
| Supply and install mirror, size 460*910mm as per approved sample including frames, backing and all accessories to complete. | material | 94.67 |
| Supply and install towel ring , surface mounted, satin finish stainless steel as per approved sample including accessories. | material | 11.83 |
| Kitchen sink with single bowl with hot/cold water mixer. | material | 165.68 |
| Supply and install Base mounted flush tank water Western water closet system with lid connected to 110mm soil pipe and sanitary tee complete with jointing, angles and bent below floor slab to drainage system | material | 378.7 |
| Gate Valves | material | 82.84 |
| Slow Closing Valve | material | 82.84 |
| 1 meter length 10mm diameter Flexible Hose with insulated handle complete with fork support, index push, vacuum breaker | material | 7.16 |
| 50mm diameter | material | 7.16 |
| 75mm diameter | material | 9.54 |
| 80mm diameter | material | 10.69 |
| 100mm diameter | material | 11.26 |
| 110mm diameter | material | 11.83 |
| 13mm diameter | material | 2.39 |
| 15mm diameter | material | 2.96 |
| 20mm diameter | material | 3.63 |
| 25mm diameter | material | 4.77 |
| 32mm diameter | material | 5.92 |
| 13mm diameter | material | 2.96 |
| 20mm diameter | material | 3.63 |
| 25mm diameter | material | 4.2 |
| Isolation Valve Size 20 | material | 11.83 |
| Isolation Valve Size 25 | material | 14.22 |
| Isolation Valve Size 32 | material | 17.75 |
| Isolation Valve Size 50 | material | 18.99 |
| 20 mm diameter spray head for cold water supply | material | 8.88 |
| Supply and install Electric Water Heater set with connection | material | 118.34 |
| Water meter complete with accessories. | material | 295.86 |
| Roof drain | material | 29.59 |
| Vent on a roof to exhaust air | material | 29.59 |
| 300 X 300 mm Gully trap | material | 29.59 |
| inspection chamber, size 800x900x1000 | material | 355.03 |
| 900mm x 800mm Pressure break chamber | material | 355.03 |
| Floor cleanout, size 75 mm diameter | material | 11.83 |
| Floor cleanout, size 110 mm diameter | material | 23.67 |
| GRP water tanks capacity of each 1000 liter complete with all fittings, all valves and concrete pad | material | 828.4 |
| Mini split actual capacity 2 Ton | material | 414.2 |
| Supply, fabricate, install and testing factory fabricated metal ducts with flanges complete with supports, vanes, dampers, links, levers and quadrants etc. as per specifications. It shall include all materials of the duct and supporting arrangement comple | material | 2.39 |
| Supplying, installation testing & commissioning of external insulation on ducts | material | 11.83 |
| Supply, fix, testing and commissioning of exhaust air/fresh air louvers of powder coated extruded aluminium construction. | material | 59.17 |
| Providing, fixing, testing and commissioning of powder coated extruded aluminum sections grills and diffusers with dampers. | material | 59.17 |
| Supply, Installation & Testing of 2 hours Fire rated system for closing the openings between rooms with help of Rock wool, G.I Sheet and Hilti or equivalent Sealants( Qty measured will be the size of opening). Item Properties shall be quoted as per techni | material | 2958.59 |
| 4.5 KG CO2 Type Fire Extinguishers | material | 295.86 |
| 6 KG ABC Type Fire Extinguishers | material | 414.2 |
| Junction Box for lighting fixture | material | 12.12 |
| Trench excavation to receive 2 nos 50mm diameter PVC Conduit, sand bedding and embedded with sand encasement and backfilling with excavated material complete with warning tape at approved depth | material | 5.54 |
| Supply, Install, fixings, testing and commissioning 80W LED Projector waterproof DJ effect light including customized project image features complete with mounting system specification to Engineer's approval. | material | 134 |
| Earth Pit | material | 18.99 |
| Grounding rod 20mmX3m | material | 18.9 |
| Grounding rod with Pit 20mmX3m | material | 37.41 |
| Earthing Bar | material | 98.4 |
| 120mm2 Tinned copper wire | material | 9.54 |
| Guard Room 1 | material | 391.3 |
| Guard Room 2 | material | 391.3 |
| Guard Room 3 | material | 391.3 |
| 30A, 2P AC Disconnect Switch | material | 66.52 |
| 20A Duplex Receptacle Floor Mounted | material | 67.47 |
| Twin Socket outlet | material | 29.3 |
| Twin Socket outlet, Weather Proof | material | 49.05 |
| Single gang Lighting switch | material | 24.91 |
| 36W LED linear Pendant lighting | material | 70.72 |
| 36W LED Emergency linear Pendant lighting | material | 97.44 |
| 13W recess mounted LED down light fitting | material | 38.27 |
| 13W recess emergency mounted LED down light fitting with 1.5 Hr Battery | material | 82.27 |
| 10.4W LED Exit light with 1.5 Hr Battery | material | 62.13 |
| 4mm2 Cu./FRLSZH Cable | material | 1.15 |
| 6mm2 Cu./FRLSZH Cable | material | 1.24 |
| IR Intrusion Detection System Quad Beams (Tx & Rx) (SL-350 QDM) | material | 1039.13 |
| Control cable | material | 0.95 |
| CAT6A cable | material | 0.48 |
| Field Equipment Cabinet enclosed outdoor complete with precast concrete footing, suitable for parameter security and weather proof to the local enviroment. Not less than IP66 and IK rating. | material | 910.48 |
| Supply and install 800mm x 800mm x 800mm height concrete handhole with bituminous paint all around, 690mm x 690mm handhold cover and sump cover.; including pit excavation | material | 253.29 |
| 800mm depth minimum Trench excavation to receive 3 nos 50mm diameter PVC Conduit with spacer, sand bedding and embedded with sand encasement and backfill with excavated material well compacted complete with warning tape | material | 5.92 |
| Hot dipped galvanized cable conduits for CAT6A cable and Control Cables embedded to wall | material | 9.26 |
| 8 Port Industrial PoE Switch 10/100BaseT (0 deg to +70 deg. Celsius) | material | 1073.97 |
| 06C Optical Fiber SM | material | 1.24 |
| 48C Optical Fiber SM | material | 3.34 |
| 48 Core Splice Closure | material | 128.84 |
| Boom Barrier at Security Guard Room | material | 1563.09 |
| Pedestrian turnstile at Security Guard Room | material | 3677.81 |
| Access Control Unit | material | 459.82 |
| Access Card Reader | material | 9.26 |
| Magnetic Lock | material | 92 |
| Break Glass | material | 36.84 |
| Exit Push button | material | 18.52 |
| Door Sensor | material | 18.52 |
| Biometrics Reader | material | 64.42 |
| Pole/Bollard mounted IP( PoE), Automatic Number Plate Recognition (ANPR, camera, 5MP,IP 66, IR illumination, 3-8mm varifocal, auto iris lens type price include the Bollard/pole) | material | 1830.7 |
| 12U rack dimension (W x H x L) 600 x 625 x 600 mm | material | 331.08 |
| 4C-16mm2 CU/XLPE/PVC direct buried armored cable | material | 5.82 |
| 4C-10mm2 CU/XLPE/PVC direct buried armored cable | material | 5.34 |
| 16mm2 CU/PVC wire | material | 1.15 |
| 10mm2 CU/PVC wire | material | 0.86 |
| 400V, 3PH, 60Hz lighting control panel (LCP-02) | material | 2363.05 |
| 38W, 230V, 1PH, 60Hz fence, led linear uplight lighting, IP66 | material | 67.47 |
| 4C-16mm2 CU/XLPE/PVC direct buried armored cable | material | 5.82 |
| 4C-10mm2 CU/XLPE/PVC direct buried armored cable | material | 5.34 |
| 16mm2 CU/PVC wire | material | 1.15 |
| 10mm2 CU/PVC wire | material | 0.86 |
| Fire Alarm Control panel with fire alarm zoning with Mimic panel with fire alarm zoning | material | 801.21 |
| Main Fire Alarm Control panel with fire alarm zoning with Mimic panel with fire alarm zoning | material | 801.21 |
| Supply and installation of the addressable manual call point with operation safety glass breaking and pushbutton | material | 24.34 |
| Supply and installation of the photoelectric heat & smoke detector with base | material | 35.5 |
| Sounder With Beacon | material | 24.34 |
| Addressable Control module for Sounders | material | 29.3 |
| Addressable Control module for HVAC System | material | 29.3 |
| Addressable Monitor module for HVAC System | material | 29.2 |
| 2C x 1.5 Sqm FR Rated Armored - Cable For Loop Wiring | material | 1.34 |
| DACT (Auto - Dailer) for 24x7 Civil Defence | material | 177.51 |
| Transmission Communication cable - Fiber Optics 12Core | material | 3.72 |
| Transmission Communication cable - Ethernet Cable | material | 0.67 |
| Supply, install to site and installation of power supply system for fire alarm control panel | material | 455.34 |
| Supply, install to site and installation of power cable | material | 0.95 |
| Fire Fighter’s Telephone Centre | material | 455.34 |
| Fireman’s Telephone Jack | material | 546.29 |
| Voice Command Center | material | 3.72 |
| MH depth 1.5 - 2.5m | material | 7819.68 |
| MH depth 2.5 - 3.5m | material | 11192.7 |
| MH depth 3.5 - 4.5m | material | 13250.4 |
| MH depth > 4.50m | material | 14760.8 |
| MH depth 2.5 -3.5m | material | 14450.6 |
| MH depth > 3.50m | material | 16989.2 |
| Steel fixer | labor |  |
| Depth Between 0m to 1.50m | material | 2.55 |
| Depth Between 1.50m to 2.50m | material | 3.15 |
| Depth > 2.50m | material | 3.75 |
| Depth Between 0m to 1.50m | material | 3.24 |
| Depth Between 1.50m to 2.50m | material | 3.81 |
| Depth > 2.50m | material | 4.41 |
| Depth Between 0m to 1.50m | material | 4.21 |
| Depth Between 1.50m to 2.50m | material | 4.81 |
| Depth > 2.50m | material | 5.41 |
| Depth Between 0m to 1.50m | material | 5.53 |
| Depth Between 1.50m to 2.50m | material | 6.13 |
| Depth > 2.50m | material | 6.76 |
| Gate valves dia 50 mm | material | 53.25 |
| Gate valves dia 100 mm | material | 63.91 |
| Gate valves dia 150 mm | material | 85.21 |
| Gate valves dia 200 mm | material | 127.81 |
| Air valves with dia 50 mm | material | 426.04 |
| Washout valve dia 100 mm | material | 284.02 |
| Wash out chamber (2500x 2500mm) | material | 710.06 |
| Air valve chamber (1000x 1000 mm) | material | 461.54 |
| Flow meter chamber (1500x 3000 mm) | material | 710.06 |
| Flow meter dia 150 mm | material | 1242.61 |
| Glass Fused Bolted (GLS) 1500 m3 Tank with associated accessories & manufacturer recommendation for the foundation | material | 18198.1 |
| 100 mm thickness lean concrete under the foundation | material | 12.43 |
| Foundation | material | 26.63 |
| Walls | material | 46.15 |
| Beams | material | 49.7 |
| Columns | material | 53.25 |
| Common brickwork. 300mm thick; vertical straight wall complete with accessories. | material | 4.27 |
| Two Layers of Bituminous Coating | material | 0.37 |
| 20x20 Approved Polysulfide Joint Sealant | material | 0.72 |
| 2 perpendicular layers of cold bitumen coats | material | 0.37 |
| 2 layer of 4mm HDPE membrane, 2 perpendicular layers cold bitumen coats | material | 1.78 |
| 1 layer EPOXY Paint 300 micron | material | 2.15 |
| Membrane fully bonded to prime deck and upstand | material | 1.6 |
| Geotextile Filter membrane uv resistance | material | 0.2 |
| 85mm thick thermal insulation | material | 1.09 |
| 1.5mm thick epdm waterproofing membrane | material | 0.72 |
| Supply and install 33mm thick Lexan cladding blue complete with necessary framings & accessories all as per manufacturer's & architectural drawing. | material | 12.43 |
| Supply and install 50mm thick random cut stone cladding complete with 600mm x 50mm thick coping, necessary framings, slotted anchor connection, steel tube framing, aluminum angles all necessary fittings & accessories as per manufacturer's detail & archite | material | 9.96 |
| Supply and install External plastering to walls and columns min. 15mm thick with cement mortar of specified grade including galvanized mesh, corner beads, angle beads, CE bonds to rough and smooth plaster complete the work as per drawing & specification. | material | 1.09 |
| Supply and install 2 coats of weatherproof paint at walls including one prime coat and two coats and putty to give smooth Surface as a base for paint including fiberglass tape to joints and all other accessories as per manufacturers approved specification | material | 1.26 |
| Supply and install MODON Signage with Logo Type 1 | material | 355.03 |
| Supply and install MODON Signage Type 2 | material | 355.03 |
| Supply and install "Triangle Style" signage | material | 71.01 |
| Magnetic Control Access barrier, Automatic Vehicular Barriers to be installed on ground with magnetic access | material | 710.06 |
| Trench excavation to receive 2 nos 50mm diameter PVC Conduit, sand bedding and embedded with sand encasement and backfilling with excavated material complete with warning tape at approved depth | material | 1.66 |
| IR Intrusion Detection System Quad Beams (Tx & Rx) (SL-350 QDM) | material | 311.74 |
| Control cable | material | 0.29 |
| CAT6A cable | material | 0.14 |
| Field Equipment Cabinet enclosed outdoor complete with precast concrete footing, suitable for parameter security and weather proof to the local enviroment. Not less than IP66 and IK rating. | material | 273.14 |
| Supply and install 800mm x 800mm x 800mm height concrete handhole with bituminous paint all around, 690mm x 690mm handhold cover and sump cover.; including pit excavation | material | 75.99 |
| 800mm depth minimum Trench excavation to receive 3 nos 50mm diameter PVC Conduit with spacer, sand bedding and embedded with sand encasement and backfill with excavated material well compacted complete with warning tape | material | 1.78 |
| Hot dipped galvanized cable conduits for CAT6A cable and Control Cables embedded to wall | material | 2.78 |
| 8 Port Industrial PoE Switch 10/100BaseT (0 deg to +70 deg. Celsius) | material | 322.19 |
| 06C Optical Fiber SM | material | 0.37 |
| 48C Optical Fiber SM | material | 1 |
| 48 Core Splice Closure | material | 38.65 |
| Boom Barrier at Security Guard Room | material | 468.93 |
| Pedestrian turnstile at Security Guard Room | material | 1103.34 |
| Access Control Unit | material | 137.95 |
| Access Card Reader | material | 2.78 |
| Magnetic Lock | material | 27.6 |
| Break Glass | material | 11.05 |
| Exit Push button | material | 5.55 |
| Door Sensor | material | 5.55 |
| Biometrics Reader | material | 19.33 |
| Pole/Bollard mounted IP( PoE), Automatic Number Plate Recognition (ANPR, camera, 5MP,IP 66, IR illumination, 3-8mm varifocal, auto iris lens type price include the Bollard/pole) | material | 549.21 |
| 12U rack dimension (W x H x L) 600 x 625 x 600 mm | material | 99.32 |
| 4C-16mm2 CU/XLPE/PVC direct buried armored cable | material | 1.75 |
| 4C-10mm2 CU/XLPE/PVC direct buried armored cable | material | 1.6 |
| 16mm2 CU/PVC wire | material | 0.34 |
| 10mm2 CU/PVC wire | material | 0.26 |
| 400V, 3PH, 60Hz lighting control panel (LCP-02) | material | 708.92 |
| 38W, 230V, 1PH, 60Hz fence, led linear uplight lighting, IP66 | material | 20.24 |
| 4C-16mm2 CU/XLPE/PVC direct buried armored cable | material | 1.75 |
| 4C-10mm2 CU/XLPE/PVC direct buried armored cable | material | 1.6 |
| 16mm2 CU/PVC wire | material | 0.34 |
| 10mm2 CU/PVC wire | material | 0.26 |
| Slab on Grade | material | 23.08 |
| Slabs | material | 39.05 |
| Lightweight Concrete Roof insulation as per Architect's specification | material | 1.6 |
| Insulated brickwork. with expanded polystyrene 200mm thick; vertical straight wall complete with accessories . | material | 3.92 |
| Common brickwork. 150mm thick; vertical straight wall complete with accessories. | material | 3.21 |
| CW01 - 1000 mm width x 2000 mm height | material | 60.36 |
| CW02 - 2000 mm width x 2000 mm height | material | 120.71 |
| D2 - 900 mm x 2200 mm height temper door | material | 63.91 |
| Supply and install 300*300mm terrazzo tiles with 150mm high skirting at perimeter with approved quality on 30 mm mortar including sand fill material as approved by the Client (For Roof) | material | 2.49 |
| Supply and install 300*300mm glazed ceramic wall tiles on cement mortar and including rough and smooth plaster, galvanized mesh, corner beads, angle beads, CE bonds (For Toilets) | material | 3.21 |
| Supply and install internal plastering and 2 coats of acrylic paint at walls including one coat of primer & two coats of putty to give smooth finish | material | 1.09 |
| Supply and install 300*300mm glazed ceramic wall tiles on cement mortar and including rough and smooth plaster, galvanized mesh, corner beads, angle beads, CE bonds (For Toilets) | material | 2.86 |
| Supply and install 600*600mm porcelain tiles with approved quality on 30 mm mortar including sand fill material as approved by the Client (for Security Area) | material | 2.86 |
| Supply and install 12.5mm thk, gypsum board suspended ceiling including suspension system, paints as required specification and material as approved by the Client including frames supports, access openings and all other accessories to complete as shown in | material | 2.86 |
| Guard room coping 350mm | material | 4.27 |
| Guard room coping 450mm | material | 5.7 |
| Stone coping 500mm | material | 6.21 |
| Stone coping 525mm | material | 6.41 |
| Office Chairs | material | 28.4 |
| Office Tables | material | 42.6 |
| Guard Stand | material | 177.52 |
| Supply and install Hand Wash Basin with Water Tap, angle valve, P-trap connected to 50mm diameter sanitary pipe fittings chased to wall. | material | 63.91 |
| Supply and install paper towel dispenser, surface mounted, satin finish stainless steel as per approved sample including accessories. | material | 3.55 |
| Supply and install mirror, size 460*910mm as per approved sample including frames, backing and all accessories to complete. | material | 28.4 |
| Supply and install towel ring , surface mounted, satin finish stainless steel as per approved sample including accessories. | material | 3.55 |
| Kitchen sink with single bowl with hot/cold water mixer. | material | 49.7 |
| Supply and install Base mounted flush tank water Western water closet system with lid connected to 110mm soil pipe and sanitary tee complete with jointing, angles and bent below floor slab to drainage system | material | 113.61 |
| Gate Valves | material | 24.85 |
| Slow Closing Valve | material | 24.85 |
| 1 meter length 10mm diameter Flexible Hose with insulated handle complete with fork support, index push, vacuum breaker | material | 2.15 |
| 50mm diameter | material | 2.15 |
| 75mm diameter | material | 2.86 |
| 80mm diameter | material | 3.21 |
| 100mm diameter | material | 3.38 |
| 110mm diameter | material | 3.55 |
| 13mm diameter | material | 0.72 |
| 15mm diameter | material | 0.89 |
| 20mm diameter | material | 1.09 |
| 25mm diameter | material | 1.43 |
| 32mm diameter | material | 1.78 |
| 13mm diameter | material | 0.89 |
| 20mm diameter | material | 1.09 |
| 25mm diameter | material | 1.26 |
| Isolation Valve Size 20 | material | 3.55 |
| Isolation Valve Size 25 | material | 4.27 |
| Isolation Valve Size 32 | material | 5.33 |
| Isolation Valve Size 50 | material | 5.7 |
| 20 mm diameter spray head for cold water supply | material | 2.66 |
| Supply and install Electric Water Heater set with connection | material | 35.5 |
| Water meter complete with accessories. | material | 88.76 |
| Roof drain | material | 8.88 |
| Vent on a roof to exhaust air | material | 8.88 |
| 300 X 300 mm Gully trap | material | 8.88 |
| inspection chamber, size 800x900x1000 | material | 106.51 |
| 900mm x 800mm Pressure break chamber | material | 106.51 |
| Floor cleanout, size 75 mm diameter | material | 3.55 |
| Floor cleanout, size 110 mm diameter | material | 7.1 |
| GRP water tanks capacity of each 1000 liter complete with all fittings, all valves and concrete pad | material | 248.52 |
| Mini split actual capacity 2 Ton | material | 124.26 |
| Supply, fabricate, install and testing factory fabricated metal ducts with flanges complete with supports, vanes, dampers, links, levers and quadrants etc. as per specifications. It shall include all materials of the duct and supporting arrangement comple | material | 0.72 |
| Supplying, installation testing & commissioning of external insulation on ducts | material | 3.55 |
| Supply, fix, testing and commissioning of exhaust air/fresh air louvers of powder coated extruded aluminium construction. | material | 17.75 |
| Providing, fixing, testing and commissioning of powder coated extruded aluminum sections grills and diffusers with dampers. | material | 17.75 |
| Supply, Installation & Testing of 2 hours Fire rated system for closing the openings between rooms with help of Rock wool, G.I Sheet and Hilti or equivalent Sealants( Qty measured will be the size of opening). Item Properties shall be quoted as per techni | material | 887.58 |
| 4.5 KG CO2 Type Fire Extinguishers | material | 88.76 |
| 6 KG ABC Type Fire Extinguishers | material | 124.26 |
| Junction Box for lighting fixture | material | 3.64 |
| Supply, Install, fixings, testing and commissioning 80W LED Projector waterproof DJ effect light including customized project image features complete with mounting system specification to Engineer's approval. | material | 40.2 |
| Earth Pit | material | 5.7 |
| Grounding rod 20mmX3m | material | 5.67 |
| Grounding rod with Pit 20mmX3m | material | 11.22 |
| Earthing Bar | material | 29.52 |
| 120mm2 Tinned copper wire | material | 2.86 |
| Guard Room 1 | material | 117.39 |
| Guard Room 2 | material | 117.39 |
| Guard Room 3 | material | 117.39 |
| 30A, 2P AC Disconnect Switch | material | 19.96 |
| 20A Duplex Receptacle Floor Mounted | material | 20.24 |
| Twin Socket outlet | material | 8.79 |
| Twin Socket outlet, Weather Proof | material | 14.72 |
| Single gang Lighting switch | material | 7.47 |
| 36W LED linear Pendant lighting | material | 21.22 |
| 36W LED Emergency linear Pendant lighting | material | 29.23 |
| 13W recess mounted LED down light fitting | material | 11.48 |
| 13W recess emergency mounted LED down light fitting with 1.5 Hr Battery | material | 24.68 |
| 10.4W LED Exit light with 1.5 Hr Battery | material | 18.64 |
| 4mm2 Cu./FRLSZH Cable | material | 0.34 |
| 6mm2 Cu./FRLSZH Cable | material | 0.37 |
| Fire Alarm Control panel with fire alarm zoning with Mimic panel with fire alarm zoning | material | 240.36 |
| Main Fire Alarm Control panel with fire alarm zoning with Mimic panel with fire alarm zoning | material | 240.36 |
| Supply and installation of the addressable manual call point with operation safety glass breaking and pushbutton | material | 7.3 |
| Supply and installation of the photoelectric heat & smoke detector with base | material | 10.65 |
| Sounder With Beacon | material | 7.3 |
| Addressable Control module for Sounders | material | 8.79 |
| Addressable Control module for HVAC System | material | 8.79 |
| Addressable Monitor module for HVAC System | material | 8.76 |
| 2C x 1.5 Sqm FR Rated Armored - Cable For Loop Wiring | material | 0.4 |
| DACT (Auto - Dailer) for 24x7 Civil Defence | material | 53.25 |
| Transmission Communication cable - Fiber Optics 12Core | material | 1.12 |
| Transmission Communication cable - Ethernet Cable | material | 0.2 |
| Supply, install to site and installation of power supply system for fire alarm control panel | material | 136.6 |
| Supply, install to site and installation of power cable | material | 0.29 |
| Fire Fighter’s Telephone Centre | material | 136.6 |
| Fireman’s Telephone Jack | material | 163.89 |
| Voice Command Center | material | 1.12 |
| Walls | material | 46.15 |
| Neem Tree, T01 Tree | material | 23.08 |
| Cassia Glauca Tree, T02 Tree | material | 23.08 |
| Ponciana Tree, T03 Tree | material | 23.08 |
| Dodonaea Viscosa, S01 Shrubs 400-500mm, 4plant/m2 | material | 1.6 |
| Vitex Angus-Cactus, S02 Shrubs 400-500mm, 5plant/m2 | material | 1.6 |
| Pennisetum Rubrum , S03 Shrubs 400-500mm, 5plant/m2 | material | 1.6 |
| sesuvium portulacastrum green carpet, GC01 Ground Cover | material | 1.6 |
| Catharanthus Roseus 150-200mm, GC02 Ground Cover | material | 1.6 |
| Seating Bench | material | 53.25 |
| Riyadh Stone Boulders 450mm thick | material | 8.88 |
| Gravel Mulch 150mm Beige | material | 1.09 |
| Gravel Mulch 150mm White | material | 0.72 |
| Gravel Ponds Bed - MARL MIX 500-600mm | material | 1.09 |
| Trash/ Recycle Bins | material | 26.63 |
| Grade Beams | material | 284.02 |
| Slab on grade | material | 284.02 |
| Columns | material | 284.02 |
| Hollow Concrete masonry unit, 150 mm thick wall for internal block | material | 23.67 |
| Insulated brickwork. with expanded polystyrene 200mm thick for External block | material | 26.15 |
| Hollow Concrete masonry unit, 300 mm thick wall for External block | material | 28.44 |
| D1 - 1100 mm width x 2200 mm height | material | 630.08 |
| D4 - 1800 mm width x 3000 mm height | material | 1406 |
| 1000 mm width x 2400 mm high (L1) | material | 568.05 |
| Supply and install 2 coats of epoxy paint at walls including one prime coat and two coats and putty to give smooth Surface as a base for paint including fiberglass tape to joints and all other accessories as per manufacturers approved specification | material | 9.54 |
| Acid Proof Tiles | material |  |
| Supply and install 600*600mm porcelain tiles with approved quality on 30 mm mortar including sand fill material as approved by the Client | material | 14.32 |
| Supply and install 12.5mm thk, gypsum board suspended ceiling including suspension system, paints as required specification and material as approved by the Client including frames supports, access openings and all other accessories to complete as shown in | material | 19.09 |
| 4.5 KG CO2 Type Fire Extinguishers | material | 828.41 |
| 6 KG ABC Type Fire Extinguishers | material | 591.72 |
| 15 mm dia. | material | 19.09 |
| 25 mm dia. | material | 23.67 |
| 32 mm dia. | material | 28.44 |
| 40 mm dia. | material | 35.5 |
| 80 mm dia. | material | 47.34 |
| 200 mm dia. | material | 59.17 |
| 250 mm dia. | material | 82.84 |
| 20 mm | material | 295.86 |
| 25 mm | material | 368.77 |
| 32 mm | material | 454.48 |
| 40 mm | material | 634.47 |
| 50 mm | material | 922.32 |
| 100 mm | material | 828.41 |
| 150 mm | material | 1233.25 |
| 200 mm | material | 4052.12 |
| 250 mm | material | 5041.44 |
| 100 mm | material | 1174.08 |
| 150 mm | material | 2118.35 |
| 200 mm | material | 4142.03 |
| Altitude control valve assembly, size 200 mm | material | 44852.2 |
| Supply, install, connection, testing and commssionigs horizontal bladder type pressure tank with capacity 1500 liter according to manufacturer's detail and specification - PS-PT-1 | material | 75739.9 |
| Supply, install, connection, testing and commssionigs horizontal bladder type pressure tank with capacity 300 liter according to manufacturer's detail and specification - PS-PT-2 | material | 28402.5 |
| Chemical DosingTank (CDT) 6000 liters capacity polytheylene tank With pump assembly. | material | 113610 |
| Actual capacity 1.5 Ton | material | 710.06 |
| Actual capacity 2.0 Ton | material | 10650.9 |
| Air Flow 280 l/s @ 150 pa | material | 177.52 |
| Air Flow 3200 l/s @ 100 pa | material | 355.03 |
| Air Flow 110 l/s @ 50 pa | material | 153.85 |
| Air Flow 70 l/s @ 50 pa | material | 130.18 |
| Air Flow 35 l/s @ 35 pa | material | 118.34 |
| Air Flow 105 l/s @ 50 pa | material | 142.01 |
| Air Flow 180 l/s @ 0.01 pa | material | 177.52 |
| Galvanized sheet metal ducts | material | 23.67 |
| Supply Liner Slot diffuser 3 slots 1 inch | material | 106.51 |
| Return Liner Slot diffuser 3 slots 1 inch | material | 106.51 |
| Exhaust Grill 150mm x 150mm | material | 106.51 |
| Sand trap louver 2400mm x 1000mm | material | 591.72 |
| Sound attenuator size 1050 x 650 x 1000 m | material | 236.69 |
| Pump Set for FF Supply (FP01.FP02) | material | 60568.2 |
| Pump Set for Domestic Supply (BP01 / BP02) | material | 27219 |
| Pump Set for Irrigation Supply (IRR01 / IRR02) | material | 46236.8 |
| Pump Set for Drainage System | material | 48793.1 |
| Pump Set for SW Force Main (1W+1S) | material | 16075.8 |
| acoustical tiles suspended ceiling 600x600mm concealed metal | material | 23.67 |
| 100 mm thickness lean concrete under the foundation | material | 82.84 |
| Foundation | material | 177.52 |
| Slab on Grade | material | 153.85 |
| Beams | material | 331.36 |
| Columns | material | 355.03 |
| Slabs | material | 260.36 |
| Lightweight Concrete Roof insulation as per Architect's specification | material | 10.69 |
| Insulated brickwork. with expanded polystyrene 200mm thick; vertical straight wall complete with accessories . | material | 26.15 |
| Common brickwork. 150mm thick; vertical straight wall complete with accessories. | material | 21.38 |
| Two Layers of Bituminous Coating | material | 2.48 |
| CW01 - 1000 mm width x 2000 mm height | material | 402.37 |
| CW02 - 2000 mm width x 2000 mm height | material | 804.74 |
| D2 - 900 mm x 2200 mm height temper door | material | 426.04 |
| Supply and install 50mm thick random cut stone cladding complete with 600mm x 50mm thick coping, necessary framings, slotted anchor connection, steel tube framing, aluminum angles all necessary fittings & accessories as per manufacturer's detail & archite | material | 66.43 |
| Supply and install 300*300mm terrazzo tiles with 150mm high skirting at perimeter with approved quality on 30 mm mortar including sand fill material as approved by the Client (For Roof) | material | 16.61 |
| Supply and install 300*300mm glazed ceramic wall tiles on cement mortar and including rough and smooth plaster, galvanized mesh, corner beads, angle beads, CE bonds (For Toilets) | material | 21.38 |
| Supply and install internal plastering and 2 coats of acrylic paint at walls including one coat of primer & two coats of putty to give smooth finish | material | 7.25 |
| Supply and install 300*300mm glazed ceramic wall tiles on cement mortar and including rough and smooth plaster, galvanized mesh, corner beads, angle beads, CE bonds (For Toilets) | material | 19.09 |
| Supply and install 600*600mm porcelain tiles with approved quality on 30 mm mortar including sand fill material as approved by the Client (for Security Area) | material | 19.09 |
| Supply and install 12.5mm thk, gypsum board suspended ceiling including suspension system, paints as required specification and material as approved by the Client including frames supports, access openings and all other accessories to complete as shown in | material | 19.09 |
| Guard room coping 350mm | material | 28.44 |
| Guard room coping 450mm | material | 37.98 |
| Stone coping 500mm | material | 41.42 |
| Stone coping 525mm | material | 42.76 |
| Office Chairs | material | 189.35 |
| Office Tables | material | 284.02 |
| Guard Stand | material | 1183.44 |
| Supply and install Hand Wash Basin with Water Tap, angle valve, P-trap connected to 50mm diameter sanitary pipe fittings chased to wall. | material | 426.04 |
| Supply and install paper towel dispenser, surface mounted, satin finish stainless steel as per approved sample including accessories. | material | 23.67 |
| Supply and install mirror, size 460*910mm as per approved sample including frames, backing and all accessories to complete. | material | 189.35 |
| Supply and install towel ring , surface mounted, satin finish stainless steel as per approved sample including accessories. | material | 23.67 |
| Kitchen sink with single bowl with hot/cold water mixer. | material | 331.36 |
| Supply and install Base mounted flush tank water Western water closet system with lid connected to 110mm soil pipe and sanitary tee complete with jointing, angles and bent below floor slab to drainage system | material | 757.4 |
| Gate Valves | material | 165.68 |
| Slow Closing Valve | material | 165.68 |
| 1 meter length 10mm diameter Flexible Hose with insulated handle complete with fork support, index push, vacuum breaker | material | 14.32 |
| 50mm diameter | material | 14.32 |
| 75mm diameter | material | 19.09 |
| 80mm diameter | material | 21.38 |
| 100mm diameter | material | 22.52 |
| 110mm diameter | material | 23.67 |
| 13mm diameter | material | 4.77 |
| 15mm diameter | material | 5.92 |
| 20mm diameter | material | 7.25 |
| 25mm diameter | material | 9.54 |
| 32mm diameter | material | 11.83 |
| 13mm diameter | material | 5.92 |
| 20mm diameter | material | 7.25 |
| 25mm diameter | material | 8.4 |
| Isolation Valve Size 20 | material | 23.67 |
| Isolation Valve Size 25 | material | 28.44 |
| Isolation Valve Size 32 | material | 35.5 |
| Isolation Valve Size 50 | material | 37.98 |
| 20 mm diameter spray head for cold water supply | material | 17.75 |
| Supply and install Electric Water Heater set with connection | material | 236.69 |
| Water meter complete with accessories. | material | 591.72 |
| Roof drain | material | 59.17 |
| Vent on a roof to exhaust air | material | 59.17 |
| 300 X 300 mm Gully trap | material | 59.17 |
| inspection chamber, size 800x900x1000 | material | 710.06 |
| 900mm x 800mm Pressure break chamber | material | 710.06 |
| Floor cleanout, size 75 mm diameter | material | 23.67 |
| Floor cleanout, size 110 mm diameter | material | 47.34 |
| GRP water tanks capacity of each 1000 liter complete with all fittings, all valves and concrete pad | material | 1656.81 |
| Mini split actual capacity 2 Ton | material | 828.41 |
| Supply, fabricate, install and testing factory fabricated metal ducts with flanges complete with supports, vanes, dampers, links, levers and quadrants etc. as per specifications. It shall include all materials of the duct and supporting arrangement comple | material | 4.77 |
| Supplying, installation testing & commissioning of external insulation on ducts | material | 23.67 |
| Supply, fix, testing and commissioning of exhaust air/fresh air louvers of powder coated extruded aluminium construction. | material | 118.34 |
| Providing, fixing, testing and commissioning of powder coated extruded aluminum sections grills and diffusers with dampers. | material | 118.34 |
| Supply, Installation & Testing of 2 hours Fire rated system for closing the openings between rooms with help of Rock wool, G.I Sheet and Hilti or equivalent Sealants( Qty measured will be the size of opening). Item Properties shall be quoted as per techni | material | 5917.18 |
| 4.5 KG CO2 Type Fire Extinguishers | material | 591.72 |
| 6 KG ABC Type Fire Extinguishers | material | 828.41 |
| Junction Box for lighting fixture | material | 24.24 |
| Trench excavation to receive 2 nos 50mm diameter PVC Conduit, sand bedding and embedded with sand encasement and backfilling with excavated material complete with warning tape at approved depth | material | 11.07 |
| Supply, Install, fixings, testing and commissioning 80W LED Projector waterproof DJ effect light including customized project image features complete with mounting system specification to Engineer's approval. | material | 267.99 |
| Earth Pit | material | 37.98 |
| Grounding rod 20mmX3m | material | 37.79 |
| Grounding rod with Pit 20mmX3m | material | 74.82 |
| Earthing Bar | material | 196.79 |
| 120mm2 Tinned copper wire | material | 19.09 |
| Guard Room 1 | material | 782.59 |
| Guard Room 2 | material | 782.59 |
| Guard Room 3 | material | 782.59 |
| 30A, 2P AC Disconnect Switch | material | 133.04 |
| 20A Duplex Receptacle Floor Mounted | material | 134.95 |
| Twin Socket outlet | material | 58.6 |
| Twin Socket outlet, Weather Proof | material | 98.11 |
| Single gang Lighting switch | material | 49.82 |
| 36W LED linear Pendant lighting | material | 141.44 |
| 36W LED Emergency linear Pendant lighting | material | 194.89 |
| 13W recess mounted LED down light fitting | material | 76.54 |
| 13W recess emergency mounted LED down light fitting with 1.5 Hr Battery | material | 164.54 |
| 10.4W LED Exit light with 1.5 Hr Battery | material | 124.26 |
| 4mm2 Cu./FRLSZH Cable | material | 2.29 |
| 6mm2 Cu./FRLSZH Cable | material | 2.48 |
| Fire Alarm Control panel with fire alarm zoning with Mimic panel with fire alarm zoning | material | 1602.41 |
| Main Fire Alarm Control panel with fire alarm zoning with Mimic panel with fire alarm zoning | material | 1602.41 |
| Supply and installation of the addressable manual call point with operation safety glass breaking and pushbutton | material | 48.67 |
| Supply and installation of the photoelectric heat & smoke detector with base | material | 71.01 |
| Sounder With Beacon | material | 48.67 |
| Addressable Control module for Sounders | material | 58.6 |
| Addressable Control module for HVAC System | material | 58.6 |
| Addressable Monitor module for HVAC System | material | 58.41 |
| 2C x 1.5 Sqm FR Rated Armored - Cable For Loop Wiring | material | 2.67 |
| DACT (Auto - Dailer) for 24x7 Civil Defence | material | 355.03 |
| Transmission Communication cable - Fiber Optics 12Core | material | 7.44 |
| Transmission Communication cable - Ethernet Cable | material | 1.34 |
| Supply, install to site and installation of power supply system for fire alarm control panel | material | 910.67 |
| Supply, install to site and installation of power cable | material | 1.91 |
| Fire Fighter’s Telephone Centre | material | 910.67 |
| Fireman’s Telephone Jack | material | 1092.58 |
| Voice Command Center | material | 7.44 |
| Walls | material | 307.69 |
| Common brickwork. 300mm thick; vertical straight wall complete with accessories. | material | 28.44 |
| 20x20 Approved Polysulfide Joint Sealant | material | 4.77 |
| 2 perpendicular layers of cold bitumen coats | material | 2.48 |
| 2 layer of 4mm HDPE membrane, 2 perpendicular layers cold bitumen coats | material | 11.83 |
| 1 layer EPOXY Paint 300 micron | material | 14.32 |
| Membrane fully bonded to prime deck and upstand | material | 10.69 |
| Geotextile Filter membrane uv resistance | material | 1.34 |
| 85mm thick thermal insulation | material | 7.25 |
| 1.5mm thick epdm waterproofing membrane | material | 4.77 |
| Supply and install 33mm thick Lexan cladding blue complete with necessary framings & accessories all as per manufacturer's & architectural drawing. | material | 82.84 |
| Supply and install External plastering to walls and columns min. 15mm thick with cement mortar of specified grade including galvanized mesh, corner beads, angle beads, CE bonds to rough and smooth plaster complete the work as per drawing & specification. | material | 7.25 |
| Supply and install 2 coats of weatherproof paint at walls including one prime coat and two coats and putty to give smooth Surface as a base for paint including fiberglass tape to joints and all other accessories as per manufacturers approved specification | material | 8.4 |
| Supply and install MODON Signage with Logo Type 1 | material | 2366.87 |
| Supply and install MODON Signage Type 2 | material | 2366.87 |
| Supply and install "Triangle Style" signage | material | 473.37 |
| Magnetic Control Access barrier, Automatic Vehicular Barriers to be installed on ground with magnetic access | material | 4733.74 |
| IR Intrusion Detection System Quad Beams (Tx & Rx) (SL-350 QDM) | material | 2078.27 |
| Control cable | material | 1.91 |
| CAT6A cable | material | 0.95 |
| Field Equipment Cabinet enclosed outdoor complete with precast concrete footing, suitable for parameter security and weather proof to the local enviroment. Not less than IP66 and IK rating. | material | 1820.96 |
| Supply and install 800mm x 800mm x 800mm height concrete handhole with bituminous paint all around, 690mm x 690mm handhold cover and sump cover.; including pit excavation | material | 506.59 |
| 800mm depth minimum Trench excavation to receive 3 nos 50mm diameter PVC Conduit with spacer, sand bedding and embedded with sand encasement and backfill with excavated material well compacted complete with warning tape | material | 11.83 |
| Hot dipped galvanized cable conduits for CAT6A cable and Control Cables embedded to wall | material | 18.52 |
| 8 Port Industrial PoE Switch 10/100BaseT (0 deg to +70 deg. Celsius) | material | 2147.94 |
| 06C Optical Fiber SM | material | 2.48 |
| 48C Optical Fiber SM | material | 6.68 |
| 48 Core Splice Closure | material | 257.68 |
| Boom Barrier at Security Guard Room | material | 3126.18 |
| Pedestrian turnstile at Security Guard Room | material | 7355.63 |
| Access Control Unit | material | 919.64 |
| Access Card Reader | material | 18.52 |
| Magnetic Lock | material | 184.01 |
| Break Glass | material | 73.68 |
| Exit Push button | material | 37.03 |
| Door Sensor | material | 37.03 |
| Biometrics Reader | material | 128.84 |
| Pole/Bollard mounted IP( PoE), Automatic Number Plate Recognition (ANPR, camera, 5MP,IP 66, IR illumination, 3-8mm varifocal, auto iris lens type price include the Bollard/pole) | material | 3661.4 |
| 12U rack dimension (W x H x L) 600 x 625 x 600 mm | material | 662.15 |
| 4C-16mm2 CU/XLPE/PVC direct buried armored cable | material | 11.64 |
| 4C-10mm2 CU/XLPE/PVC direct buried armored cable | material | 10.69 |
| 16mm2 CU/PVC wire | material | 2.29 |
| 10mm2 CU/PVC wire | material | 1.72 |
| 400V, 3PH, 60Hz lighting control panel (LCP-02) | material | 4726.11 |
| 38W, 230V, 1PH, 60Hz fence, led linear uplight lighting, IP66 | material | 134.95 |
| 4C-16mm2 CU/XLPE/PVC direct buried armored cable | material | 11.64 |
| 4C-10mm2 CU/XLPE/PVC direct buried armored cable | material | 10.69 |
| 16mm2 CU/PVC wire | material | 2.29 |
| 10mm2 CU/PVC wire | material | 1.72 |
| Depth Between 0m to 1.50m | material | 16.99 |
| Depth Between 1.50m to 2.50m | material | 21 |
| Depth > 2.50m | material | 25 |
| Depth Between 0m to 1.50m | material | 21.57 |
| Depth Between 1.50m to 2.50m | material | 25.39 |
| Depth > 2.50m | material | 29.4 |
| Depth Between 0m to 1.50m | material | 28.06 |
| Depth Between 1.50m to 2.50m | material | 32.07 |
| Depth > 2.50m | material | 36.08 |
| Depth Between 0m to 1.50m | material | 36.84 |
| Depth Between 1.50m to 2.50m | material | 40.85 |
| Depth > 2.50m | material | 45.05 |
| Gate valves dia 50 mm | material | 355.03 |
| Gate valves dia 100 mm | material | 426.04 |
| Gate valves dia 150 mm | material | 568.05 |
| Gate valves dia 200 mm | material | 852.07 |
| Air valves with dia 50 mm | material | 2840.25 |
| Washout valve dia 100 mm | material | 1893.5 |
| Wash out chamber (2500x 2500mm) | material | 4733.74 |
| Air valve chamber (1000x 1000 mm) | material | 3076.93 |
| Flow meter chamber (1500x 3000 mm) | material | 4733.74 |
| Flow meter dia 150 mm | material | 8284.05 |
| Glass Fused Bolted (GLS) 1500 m3 Tank with associated accessories & manufacturer recommendation for the foundation | material | 121321 |
| Neem Tree, T01 Tree | material | 153.85 |
| Cassia Glauca Tree, T02 Tree | material | 153.85 |
| Ponciana Tree, T03 Tree | material | 153.85 |
| Dodonaea Viscosa, S01 Shrubs 400-500mm, 4plant/m2 | material | 10.69 |
| Vitex Angus-Cactus, S02 Shrubs 400-500mm, 5plant/m2 | material | 10.69 |
| Pennisetum Rubrum , S03 Shrubs 400-500mm, 5plant/m2 | material | 10.69 |
| sesuvium portulacastrum green carpet, GC01 Ground Cover | material | 10.69 |
| Catharanthus Roseus 150-200mm, GC02 Ground Cover | material | 10.69 |
| Seating Bench | material | 355.03 |
| Riyadh Stone Boulders 450mm thick | material | 59.17 |
| Gravel Mulch 150mm Beige | material | 7.25 |
| Gravel Mulch 150mm White | material | 4.77 |
| Gravel Ponds Bed - MARL MIX 500-600mm | material | 7.25 |
| Trash/ Recycle Bins | material | 177.52 |
| Depth Between 0m to 1.50m | material | 56.91 |
| Depth Between 1.50m to 2.50m | material | 70.34 |
| Depth > 2.50m | material | 83.76 |
| Depth Between 0m to 1.50m | material | 72.26 |
| Depth Between 1.50m to 2.50m | material | 85.04 |
| Depth > 2.50m | material | 98.48 |
| Depth Between 0m to 1.50m | material | 93.99 |
| Depth Between 1.50m to 2.50m | material | 107.43 |
| Depth > 2.50m | material | 120.85 |
| Depth Between 0m to 1.50m | material | 123.41 |
| Depth Between 1.50m to 2.50m | material | 136.84 |
| Depth > 2.50m | material | 150.9 |
| Gate valves dia 50 mm | material | 1189.35 |
| Gate valves dia 100 mm | material | 1427.22 |
| Gate valves dia 150 mm | material | 1902.97 |
| Gate valves dia 200 mm | material | 2854.45 |
| Air valves with dia 50 mm | material | 9514.82 |
| Washout valve dia 100 mm | material | 6343.22 |
| Wash out chamber (2500x 2500mm) | material | 15858 |
| Air valve chamber (1000x 1000 mm) | material | 10307.7 |
| Flow meter chamber (1500x 3000 mm) | material | 15858 |
| Flow meter dia 150 mm | material | 27751.6 |
| Planting Labor | labor |  |
| Neem Tree, T01 Tree | material | 515.38 |
| Cassia Glauca Tree, T02 Tree | material | 515.38 |
| Ponciana Tree, T03 Tree | material | 515.38 |
| Dodonaea Viscosa, S01 Shrubs 400-500mm, 4plant/m2 | material | 35.81 |
| Vitex Angus-Cactus, S02 Shrubs 400-500mm, 5plant/m2 | material | 35.81 |
| Pennisetum Rubrum , S03 Shrubs 400-500mm, 5plant/m2 | material | 35.81 |
| sesuvium portulacastrum green carpet, GC01 Ground Cover | material | 35.81 |
| Catharanthus Roseus 150-200mm, GC02 Ground Cover | material | 35.81 |
| Furnishing Labor | labor |  |
| Seating Bench | material | 1189.35 |
| Riyadh Stone Boulders 450mm thick | material | 198.23 |
| Gravel Mulch 150mm Beige | material | 24.3 |
| Gravel Mulch 150mm White | material | 15.99 |
| Gravel Ponds Bed - MARL MIX 500-600mm | material | 24.3 |
| Trash/ Recycle Bins | material | 594.68 |
| Grader | equipment |  |
| Subgrade | material | 31.97 |
| Aggregate base course | material | 67.14 |
| Pavement Labor | labor |  |
| Bobcat | equipment |  |
| Precast Concrete Curbstone 150X300X900 Type (K1-A) | material | 31.97 |
| Precast Concrete Curbstone 100X200X500 Type (K4) | material | 31.97 |
| Precast Concrete Curbstone 150X300X500 Type (K1-B) | material | 31.97 |
| Precast Concrete Curbstone Type (K1-C) | material | 31.97 |
| Flush Kerb Type (D) | material | 31.97 |
| 60mm thick | material | 44.12 |
| 80mm thick | material | 58.19 |
| Road Painter | labor |  |
| Retroreflective Thermoplastic White Traffic lines | material | 28.13 |
| Retroreflective Thermoplastic Yellow, Traffic lines | material | 28.13 |
| Precast Concrete Blister Warning Tactile Paver Brown Finish 300*300*60mm | material | 118.94 |
| Traffic signs, ground mounted, Sheet Aluminum, (breakaway) Single post IPE, with all accessories | material | 634.32 |
| Asphalt Cutter | equipment |  |
| Asphalt Paver | equipment |  |
| Bituminous base course (Grading I - Class A), including Prime Coat (MC1) | material | 404.76 |
| 100 mm thickness lean concrete under the foundation | material | 277.51 |
| Carpenter Helper | labor |  |
| Foundation | material | 594.68 |
| Columns | material | 1189.35 |
| Slab on Grade | material | 515.38 |
| Beams | material | 1110.06 |
| Slabs | material | 872.19 |
| Lightweight Concrete Roof insulation as per Architect's specification | material | 35.81 |
| Mason Helper | labor |  |
| Insulated brickwork. with expanded polystyrene 200mm thick; vertical straight wall complete with accessories . | material | 87.6 |
| Common brickwork. 150mm thick; vertical straight wall complete with accessories. | material | 71.62 |
| Two Layers of Bituminous Coating | material | 8.31 |
| CW01 - 1000 mm width x 2000 mm height | material | 1347.93 |
| CW02 - 2000 mm width x 2000 mm height | material | 2695.87 |
| D2 - 900 mm x 2200 mm height temper door | material | 1427.22 |
| Painter | labor |  |
| Painter Helper | labor |  |
| Tile Setter | labor |  |
| Supply and install 50mm thick random cut stone cladding complete with 600mm x 50mm thick coping, necessary framings, slotted anchor connection, steel tube framing, aluminum angles all necessary fittings & accessories as per manufacturer's detail & archite | material | 222.53 |
| Supply and install 300*300mm terrazzo tiles with 150mm high skirting at perimeter with approved quality on 30 mm mortar including sand fill material as approved by the Client (For Roof) | material | 55.63 |
| Supply and install 300*300mm glazed ceramic wall tiles on cement mortar and including rough and smooth plaster, galvanized mesh, corner beads, angle beads, CE bonds (For Toilets) | material | 71.62 |
| Supply and install internal plastering and 2 coats of acrylic paint at walls including one coat of primer & two coats of putty to give smooth finish | material | 24.3 |
| Supply and install 300*300mm glazed ceramic wall tiles on cement mortar and including rough and smooth plaster, galvanized mesh, corner beads, angle beads, CE bonds (For Toilets) | material | 63.94 |
| Supply and install 600*600mm porcelain tiles with approved quality on 30 mm mortar including sand fill material as approved by the Client (for Security Area) | material | 63.94 |
| Supply and install 12.5mm thk, gypsum board suspended ceiling including suspension system, paints as required specification and material as approved by the Client including frames supports, access openings and all other accessories to complete as shown in | material | 63.94 |
| Guard room coping 350mm | material | 95.27 |
| Guard room coping 450mm | material | 127.25 |
| Stone coping 500mm | material | 138.76 |
| Stone coping 525mm | material | 143.23 |
| Office Chairs | material | 634.32 |
| Office Tables | material | 951.48 |
| Guard Stand | material | 3964.51 |
| 50mm diameter | material | 47.96 |
| 75mm diameter | material | 63.94 |
| 80mm diameter | material | 71.62 |
| 100mm diameter | material | 75.46 |
| 110mm diameter | material | 79.29 |
| Roof drain | material | 198.23 |
| Vent on a roof to exhaust air | material | 198.23 |
| 300 X 300 mm Gully trap | material | 198.23 |
| inspection chamber, size 800x900x1000 | material | 2378.71 |
| 900mm x 800mm Pressure break chamber | material | 2378.71 |
| Floor cleanout, size 75 mm diameter | material | 79.29 |
| Floor cleanout, size 110 mm diameter | material | 158.58 |
| Supply and install paper towel dispenser, surface mounted, satin finish stainless steel as per approved sample including accessories. | material | 79.29 |
| Supply and install Base mounted flush tank water Western water closet system with lid connected to 110mm soil pipe and sanitary tee complete with jointing, angles and bent below floor slab to drainage system | material | 2537.29 |
| Gate Valves | material | 555.03 |
| Slow Closing Valve | material | 555.03 |
| 1 meter length 10mm diameter Flexible Hose with insulated handle complete with fork support, index push, vacuum breaker | material | 47.96 |
| 13mm diameter | material | 15.99 |
| 15mm diameter | material | 19.83 |
| 20mm diameter | material | 24.3 |
| 25mm diameter | material | 31.97 |
| 32mm diameter | material | 39.64 |
| 13mm diameter | material | 19.83 |
| 20mm diameter | material | 24.3 |
| 25mm diameter | material | 28.13 |
| Isolation Valve Size 20 | material | 79.29 |
| Isolation Valve Size 25 | material | 95.27 |
| Isolation Valve Size 32 | material | 118.94 |
| Isolation Valve Size 50 | material | 127.25 |
| 20 mm diameter spray head for cold water supply | material | 59.47 |
| Supply and install Electric Water Heater set with connection | material | 792.9 |
| Water meter complete with accessories. | material | 1982.26 |
| Supply and install Hand Wash Basin with Water Tap, angle valve, P-trap connected to 50mm diameter sanitary pipe fittings chased to wall. | material | 1427.22 |
| Supply and install mirror, size 460*910mm as per approved sample including frames, backing and all accessories to complete. | material | 634.32 |
| Supply and install towel ring , surface mounted, satin finish stainless steel as per approved sample including accessories. | material | 79.29 |
| Kitchen sink with single bowl with hot/cold water mixer. | material | 1110.06 |
| Mini split actual capacity 2 Ton | material | 2775.16 |
| Supply, fabricate, install and testing factory fabricated metal ducts with flanges complete with supports, vanes, dampers, links, levers and quadrants etc. as per specifications. It shall include all materials of the duct and supporting arrangement comple | material | 15.99 |
| Supplying, installation testing & commissioning of external insulation on ducts | material | 79.29 |
| Supply, fix, testing and commissioning of exhaust air/fresh air louvers of powder coated extruded aluminium construction. | material | 396.45 |
| Providing, fixing, testing and commissioning of powder coated extruded aluminum sections grills and diffusers with dampers. | material | 396.45 |
| Supply, Installation & Testing of 2 hours Fire rated system for closing the openings between rooms with help of Rock wool, G.I Sheet and Hilti or equivalent Sealants( Qty measured will be the size of opening). Item Properties shall be quoted as per techni | material | 19822.5 |
| 4.5 KG CO2 Type Fire Extinguishers | material | 1982.26 |
| 6 KG ABC Type Fire Extinguishers | material | 2775.16 |
| GRP water tanks capacity of each 1000 liter complete with all fittings, all valves and concrete pad | material | 5550.31 |
| Supply, Install, fixings, testing and commissioning 80W LED Projector waterproof DJ effect light including customized project image features complete with mounting system specification to Engineer's approval. | material | 897.77 |
| Guard Room 1 | material | 2621.69 |
| Guard Room 2 | material | 2621.69 |
| Guard Room 3 | material | 2621.69 |
| 30A, 2P AC Disconnect Switch | material | 445.69 |
| 20A Duplex Receptacle Floor Mounted | material | 452.08 |
| Twin Socket outlet | material | 196.31 |
| Twin Socket outlet, Weather Proof | material | 328.67 |
| Single gang Lighting switch | material | 166.89 |
| 36W LED linear Pendant lighting | material | 473.82 |
| 36W LED Emergency linear Pendant lighting | material | 652.87 |
| 13W recess mounted LED down light fitting | material | 256.42 |
| 13W recess emergency mounted LED down light fitting with 1.5 Hr Battery | material | 551.2 |
| 10.4W LED Exit light with 1.5 Hr Battery | material | 416.27 |
| Junction Box for lighting fixture | material | 81.21 |
| Trench excavation to receive 2 nos 50mm diameter PVC Conduit, sand bedding and embedded with sand encasement and backfilling with excavated material complete with warning tape at approved depth | material | 37.08 |
| Earth Pit | material | 127.25 |
| Grounding rod 20mmX3m | material | 126.61 |
| Grounding rod with Pit 20mmX3m | material | 250.66 |
| Earthing Bar | material | 659.26 |
| 120mm2 Tinned copper wire | material | 63.94 |
| 4mm2 Cu./FRLSZH Cable | material | 7.67 |
| 6mm2 Cu./FRLSZH Cable | material | 8.31 |
| 2C x 1.5 Sqm FR Rated Armored - Cable For Loop Wiring | material | 8.95 |
| Transmission Communication cable - Fiber Optics 12Core | material | 24.94 |
| Transmission Communication cable - Ethernet Cable | material | 4.48 |
| Supply, install to site and installation of power cable | material | 6.39 |
| Fire Alarm Control panel with fire alarm zoning with Mimic panel with fire alarm zoning | material | 5368.07 |
| Main Fire Alarm Control panel with fire alarm zoning with Mimic panel with fire alarm zoning | material | 5368.07 |
| Supply and installation of the addressable manual call point with operation safety glass breaking and pushbutton | material | 163.06 |
| Supply and installation of the photoelectric heat & smoke detector with base | material | 237.87 |
| Sounder With Beacon | material | 163.06 |
| Addressable Control module for Sounders | material | 196.31 |
| Addressable Control module for HVAC System | material | 196.31 |
| Addressable Monitor module for HVAC System | material | 195.67 |
| DACT (Auto - Dailer) for 24x7 Civil Defence | material | 1189.35 |
| Supply, install to site and installation of power supply system for fire alarm control panel | material | 3050.76 |
| Fire Fighter’s Telephone Centre | material | 3050.76 |
| Fireman’s Telephone Jack | material | 3660.14 |
| Voice Command Center | material | 24.94 |
| Walls | material | 1030.77 |
| Common brickwork. 300mm thick; vertical straight wall complete with accessories. | material | 95.27 |
| 20x20 Approved Polysulfide Joint Sealant | material | 15.99 |
| 2 perpendicular layers of cold bitumen coats | material | 8.31 |
| 2 layer of 4mm HDPE membrane, 2 perpendicular layers cold bitumen coats | material | 39.64 |
| 1 layer EPOXY Paint 300 micron | material | 47.96 |
| Membrane fully bonded to prime deck and upstand | material | 35.81 |
| Geotextile Filter membrane uv resistance | material | 4.48 |
| 85mm thick thermal insulation | material | 24.3 |
| 1.5mm thick epdm waterproofing membrane | material | 15.99 |
| Supply and install 33mm thick Lexan cladding blue complete with necessary framings & accessories all as per manufacturer's & architectural drawing. | material | 277.51 |
| Supply and install External plastering to walls and columns min. 15mm thick with cement mortar of specified grade including galvanized mesh, corner beads, angle beads, CE bonds to rough and smooth plaster complete the work as per drawing & specification. | material | 24.3 |
| Supply and install 2 coats of weatherproof paint at walls including one prime coat and two coats and putty to give smooth Surface as a base for paint including fiberglass tape to joints and all other accessories as per manufacturers approved specification | material | 28.13 |
| Supply and install MODON Signage with Logo Type 1 | material | 7929.02 |
| Supply and install MODON Signage Type 2 | material | 7929.02 |
| Supply and install "Triangle Style" signage | material | 1585.8 |
| Control cable | material | 6.39 |
| CAT6A cable | material | 3.2 |
| 800mm depth minimum Trench excavation to receive 3 nos 50mm diameter PVC Conduit with spacer, sand bedding and embedded with sand encasement and backfill with excavated material well compacted complete with warning tape | material | 39.64 |
| Hot dipped galvanized cable conduits for CAT6A cable and Control Cables embedded to wall | material | 62.03 |
| 4C-16mm2 CU/XLPE/PVC direct buried armored cable | material | 39.01 |
| 4C-10mm2 CU/XLPE/PVC direct buried armored cable | material | 35.81 |
| 16mm2 CU/PVC wire | material | 7.67 |
| 10mm2 CU/PVC wire | material | 5.76 |
| Depth Between 0m to 1.50m | material | 8.49 |
| Depth Between 1.50m to 2.50m | material | 10.5 |
| Depth > 2.50m | material | 12.5 |
| Depth Between 0m to 1.50m | material | 10.79 |
| Depth Between 1.50m to 2.50m | material | 12.69 |
| Depth > 2.50m | material | 14.7 |
| Depth Between 0m to 1.50m | material | 14.03 |
| Depth Between 1.50m to 2.50m | material | 16.03 |
| Depth > 2.50m | material | 18.04 |
| Depth Between 0m to 1.50m | material | 18.42 |
| Depth Between 1.50m to 2.50m | material | 20.42 |
| Depth > 2.50m | material | 22.52 |
| Gate valves dia 50 mm | material | 177.51 |
| Gate valves dia 100 mm | material | 213.02 |
| Gate valves dia 150 mm | material | 284.02 |
| Gate valves dia 200 mm | material | 426.04 |
| Air valves with dia 50 mm | material | 1420.12 |
| Washout valve dia 100 mm | material | 946.75 |
| Wash out chamber (2500x 2500mm) | material | 2366.87 |
| Air valve chamber (1000x 1000 mm) | material | 1538.47 |
| Flow meter chamber (1500x 3000 mm) | material | 2366.87 |
| Flow meter dia 150 mm | material | 4142.03 |
| Glass Fused Bolted (GLS) 1500 m3 Tank with associated accessories & manufacturer recommendation for the foundation | material | 60660.3 |
| Magnetic Control Access barrier, Automatic Vehicular Barriers to be installed on ground with magnetic access | material | 15858 |
| IR Intrusion Detection System Quad Beams (Tx & Rx) (SL-350 QDM) | material | 6962.19 |
| Field Equipment Cabinet enclosed outdoor complete with precast concrete footing, suitable for parameter security and weather proof to the local enviroment. Not less than IP66 and IK rating. | material | 6100.23 |
| Supply and install 800mm x 800mm x 800mm height concrete handhole with bituminous paint all around, 690mm x 690mm handhold cover and sump cover.; including pit excavation | material | 1697.06 |
| 8 Port Industrial PoE Switch 10/100BaseT (0 deg to +70 deg. Celsius) | material | 7195.59 |
| 06C Optical Fiber SM | material | 8.31 |
| 48C Optical Fiber SM | material | 22.38 |
| 48 Core Splice Closure | material | 863.24 |
| Boom Barrier at Security Guard Room | material | 10472.7 |
| Pedestrian turnstile at Security Guard Room | material | 24641.3 |
| Access Control Unit | material | 3080.81 |
| Access Card Reader | material | 62.03 |
| Magnetic Lock | material | 616.42 |
| Break Glass | material | 246.82 |
| Exit Push button | material | 124.05 |
| Door Sensor | material | 124.05 |
| Biometrics Reader | material | 431.62 |
| Pole/Bollard mounted IP( PoE), Automatic Number Plate Recognition (ANPR, camera, 5MP,IP 66, IR illumination, 3-8mm varifocal, auto iris lens type price include the Bollard/pole) | material | 12265.7 |
| 12U rack dimension (W x H x L) 600 x 625 x 600 mm | material | 2218.21 |
| 4C-16mm2 CU/XLPE/PVC direct buried armored cable | material | 39.01 |
| 4C-10mm2 CU/XLPE/PVC direct buried armored cable | material | 35.81 |
| 16mm2 CU/PVC wire | material | 7.67 |
| 10mm2 CU/PVC wire | material | 5.76 |
| 400V, 3PH, 60Hz lighting control panel (LCP-02) | material | 15832.5 |
| 38W, 230V, 1PH, 60Hz fence, led linear uplight lighting, IP66 | material | 452.08 |
| Bituminous concrete wearing course, (Grading I - Class A), including tack coat (RC2) | material | 121.97 |
| Bituminous concrete wearing course, (Grading I - Class A), including tack coat (RC2) | material | 408.6 |
| Road crossing ducts, 2 ways (2 x 150mm HDPE) | material | 7.3 |
| Road crossing ducts, 2 ways (2 x 110mm UPVC) | material | 4.55 |
| Road crossing ducts, 3 ways (3 x 110mm UPVC) | material | 6.5 |
| 4C-300mm2 CU/XLPE / PVC ARMORED CABLE | material | 27.03 |
| 4C-240mm2 CU/XLPE / PVC ARMORED CABLE | material | 22.07 |
| 4C-185mm2 CU/XLPE / PVC ARMORED CABLE | material | 17.06 |
| 4C-50mm2 CU/XLPE / PVC ARMORED CABLE | material | 4.98 |
| 4C-16mm2 CU/XLPE / PVC ARMORED CABLE | material | 1.75 |
| 4C-16MM2 CU/XLPE / PVC CABLE | material | 1.6 |
| 1Cx150sq.mm2,Cu, PVC wire | material | 3.09 |
| 1Cx120sq.mm2,Cu, PVC wire | material | 2.58 |
| 1Cx95sq.mm,Cu, PVC wire | material | 2.06 |
| 1Cx70sq.mm2,Cu, PVC wire | material | 1.55 |
| 1Cx25sq.mm2,Cu, PVC wire | material | 0.63 |
| 1Cx16sq.mm2,Cu, PVC wire | material | 0.29 |
| 1Cx10sq.mm2,Cu, PVC wire | material | 0.23 |
| Supply and installation of KWH meter mounting frame including concrete block for installation of KWH meter according to the standards and specifications of SEC. | material | 53.8 |
| Road crossing ducts, 2 ways (2 x 150mm HDPE) | material | 48.67 |
| Road crossing ducts, 2 ways (2 x 110mm UPVC) | material | 30.35 |
| Road crossing ducts, 3 ways (3 x 110mm UPVC) | material | 43.33 |
| 4C-300mm2 CU/XLPE / PVC ARMORED CABLE | material | 180.19 |
| 4C-240mm2 CU/XLPE / PVC ARMORED CABLE | material | 147.17 |
| 4C-185mm2 CU/XLPE / PVC ARMORED CABLE | material | 113.76 |
| 4C-50mm2 CU/XLPE / PVC ARMORED CABLE | material | 33.21 |
| 4C-16mm2 CU/XLPE / PVC ARMORED CABLE | material | 11.64 |
| 4C-16MM2 CU/XLPE / PVC CABLE | material | 10.69 |
| 1Cx150sq.mm2,Cu, PVC wire | material | 20.61 |
| 1Cx120sq.mm2,Cu, PVC wire | material | 17.18 |
| 1Cx95sq.mm,Cu, PVC wire | material | 13.74 |
| 1Cx70sq.mm2,Cu, PVC wire | material | 10.31 |
| 1Cx25sq.mm2,Cu, PVC wire | material | 4.2 |
| 1Cx16sq.mm2,Cu, PVC wire | material | 1.91 |
| 1Cx10sq.mm2,Cu, PVC wire | material | 1.53 |
| Supply and installation of KWH meter mounting frame including concrete block for installation of KWH meter according to the standards and specifications of SEC. | material | 358.66 |
| Road crossing ducts, 2 ways (2 x 150mm HDPE) | material | 163.06 |
| Road crossing ducts, 2 ways (2 x 110mm UPVC) | material | 101.67 |
| Road crossing ducts, 3 ways (3 x 110mm UPVC) | material | 145.16 |
| 4C-300mm2 CU/XLPE / PVC ARMORED CABLE | material | 603.63 |
| 4C-240mm2 CU/XLPE / PVC ARMORED CABLE | material | 493.01 |
| 4C-185mm2 CU/XLPE / PVC ARMORED CABLE | material | 381.1 |
| 4C-50mm2 CU/XLPE / PVC ARMORED CABLE | material | 111.26 |
| 4C-16mm2 CU/XLPE / PVC ARMORED CABLE | material | 39.01 |
| 4C-16MM2 CU/XLPE / PVC CABLE | material | 35.81 |
| 1Cx150sq.mm2,Cu, PVC wire | material | 69.06 |
| 1Cx120sq.mm2,Cu, PVC wire | material | 57.55 |
| 1Cx95sq.mm,Cu, PVC wire | material | 46.04 |
| 1Cx70sq.mm2,Cu, PVC wire | material | 34.53 |
| 1Cx25sq.mm2,Cu, PVC wire | material | 14.07 |
| 1Cx16sq.mm2,Cu, PVC wire | material | 6.39 |
| 1Cx10sq.mm2,Cu, PVC wire | material | 5.12 |
| Supply and installation of KWH meter mounting frame including concrete block for installation of KWH meter according to the standards and specifications of SEC. | material | 1201.5 |
| Road crossing ducts, 2 ways (2 x 150mm HDPE) | material | 24.34 |
| Road crossing ducts, 2 ways (2 x 110mm UPVC) | material | 15.18 |
| Road crossing ducts, 3 ways (3 x 110mm UPVC) | material | 21.66 |
| 4C-300mm2 CU/XLPE / PVC ARMORED CABLE | material | 90.09 |
| 4C-240mm2 CU/XLPE / PVC ARMORED CABLE | material | 73.58 |
| 4C-185mm2 CU/XLPE / PVC ARMORED CABLE | material | 56.88 |
| 4C-50mm2 CU/XLPE / PVC ARMORED CABLE | material | 16.61 |
| 4C-16mm2 CU/XLPE / PVC ARMORED CABLE | material | 5.82 |
| 4C-16MM2 CU/XLPE / PVC CABLE | material | 5.34 |
| 1Cx150sq.mm2,Cu, PVC wire | material | 10.31 |
| 1Cx120sq.mm2,Cu, PVC wire | material | 8.59 |
| 1Cx95sq.mm,Cu, PVC wire | material | 6.87 |
| 1Cx70sq.mm2,Cu, PVC wire | material | 5.15 |
| 1Cx25sq.mm2,Cu, PVC wire | material | 2.1 |
| 1Cx16sq.mm2,Cu, PVC wire | material | 0.95 |
| 1Cx10sq.mm2,Cu, PVC wire | material | 0.76 |
| Supply and installation of KWH meter mounting frame including concrete block for installation of KWH meter according to the standards and specifications of SEC. | material | 179.33 |
| 100 mm thickness lean concrete under the foundation | material | 41.42 |
| Foundation | material | 142.01 |
| Grade Beams | material | 142.01 |
| Slab on grade | material | 142.01 |
| Walls | material | 153.85 |
| Beams | material | 142.01 |
| Slabs | material | 142.01 |
| Lightweight Concrete Roof insulation as per Architect's specification | material | 5.34 |
| Hollow Concrete masonry unit, 100 mm thick wall for internal block | material | 9.54 |
| Hollow Concrete masonry unit, 150 mm thick wall for internal block | material | 11.83 |
| Insulated brickwork. with expanded polystyrene 200mm thick for External block | material | 13.07 |
| Hollow Concrete masonry unit, 300 mm thick wall for External block | material | 14.22 |
| 2 perpendicular layers of cold bitumen coats | material | 1.24 |
| 2 layer of 4mm HDPE membrane, 2 perpendicular layers cold bitumen coats | material | 5.34 |
| 1 layer EPOXY Paint 300 micron | material | 4.77 |
| Membrane fully bonded to prime deck and upstand | material | 5.34 |
| Geotextile Filter membrane uv resistance | material | 0.67 |
| 85mm thick thermal insulation | material | 4.2 |
| 1.5mm thick epdm waterproofing membrane | material | 3.63 |
| D1 - 1100 mm width x 2200 mm height | material | 315.04 |
| D2 - 1070 mm width x 2225 mm height | material | 313.42 |
| D3 - 1200 mm width x 3000 mm height | material | 468.7 |
| D4 - 1800 mm width x 3000 mm height | material | 703 |
| Roller Shuter - 3000mm width x 4000mm height | material | 1562.13 |
| D1' 1900mm width x 2950mm height | material | 729.72 |
| D2' 1200mm width x 2150mm height | material | 335.94 |
| D3' 800mm width x 2050mm height | material | 213.5 |
| D4' 1700mm width x 2050mm height | material | 453.71 |
| 1500 mm width x 1200 mm high (W01) | material | 213.02 |
| 1200 mm width x 1200 mm high (W02) | material | 170.45 |
| 1000 mm width x 2400 mm high (L1) | material | 284.02 |
| Supply and install External plastering to walls and columns min. 15mm thick with cement mortar of specified grade including galvanized mesh, corner beads, angle beads, CE bonds to rough and smooth plaster complete the work as per drawing & specification. | material | 3.63 |
| Supply and install 2 coats of weatherproof paint at walls including one prime coat and two coats and putty to give smooth Surface as a base for paint including fiberglass tape to joints and all other accessories as per manufacturers approved specification | material | 4.77 |
| Supply and install internal plastering to walls and columns min. 15mm thick with cement mortar of specified grade including galvanized mesh, corner beads, angle beads, CE bonds to rough and smooth plaster complete the work as per drawing & specification. | material | 3.63 |
| Supply and install 2 coats of epoxy paint at walls including one prime coat and two coats and putty to give smooth Surface as a base for paint including fiberglass tape to joints and all other accessories as per manufacturers approved specification | material | 4.77 |
| Supply and install 300*300mm glazed ceramic wall tiles on cement mortar and including rough and smooth plaster, galvanized mesh, corner beads, angle beads, CE bonds | material | 7.16 |
| Acid Proof Tiles | material |  |
| Supply and install 600*600mm porcelain tiles with approved quality on 30 mm mortar including sand fill material as approved by the Client | material | 7.16 |
| Supply and install 12.5mm thk, gypsum board suspended ceiling including suspension system, paints as required specification and material as approved by the Client including frames supports, access openings and all other accessories to complete as shown in | material | 9.54 |
| 4.5 KG CO2 Type Fire Extinguishers | material | 414.2 |
| 6 KG ABC Type Fire Extinguishers | material | 295.86 |
| 15 mm dia. | material | 9.54 |
| 25 mm dia. | material | 11.83 |
| 32 mm dia. | material | 14.22 |
| 40 mm dia. | material | 17.75 |
| 80 mm dia. | material | 23.67 |
| 200 mm dia. | material | 29.59 |
| 250 mm dia. | material | 41.42 |
| Supply and installation of western water closet, flush tank type, heavy duty, one piece SASO certified, approval of client, dimesion not less than 40 cm width, 68 cm length including all other accessories as per drawings and specification | material | 177.51 |
| Supply and installation of urinal, heavy duty, one piece SASO certified, approval of client, including all other accessories as per drawings and specification | material | 177.51 |
| Supply and installation of Bib tap with Perenial Hose (BPH) with stainless steel flexible hose and cast brass chromeplated hand including all other accessories to complete as per drawing and specification. | material | 23.67 |
| Supply, installation, testing and commissioning of Lavatory / wash basin with counter for toilets, built in soap dispenser, mixer, single lever arm including all accessories as per drawings and specification and to the approval of the client | material | 177.51 |
| Provide and install paper towel dispenser, surface mounted, satin finish stainless steel as per approved sample including accessories. | material | 29.59 |
| Provide and install mirror as per approved sample including frames, backing and all accessories to complete. | material | 94.67 |
| Provide and install towel ring, surface mounted, satin finish stainless steel as per approved sample including accessories. | material | 14.22 |
| Hose Bib | material | 23.67 |
| Valve Chamber | material | 177.51 |
| Retarding Chamber | material | 118.34 |
| Inspection Chamber | material | 355.03 |
| Neutralization pit 1000x1000mm | material | 355.03 |
| 25mm diameter | material | 2.39 |
| 32mm diameter | material | 3.63 |
| 40mm diameter | material | 4.77 |
| 50mm diameter | material | 5.92 |
| 75mm diameter | material | 8.3 |
| 80mm diameter | material | 9.54 |
| 100mm diameter | material | 11.83 |
| 110mm diameter | material | 14.22 |
| 15mm diameter | material | 2.96 |
| 20mm diameter | material | 4.2 |
| 25mm diameter | material | 5.34 |
| 32mm diameter | material | 6.58 |
| 40mm diameter | material | 7.16 |
| 50mm diameter | material | 9.54 |
| 100mm diameter | material | 715.98 |
| 150mm diameter | material | 940.83 |
| 200mm diameter | material | 1062.8 |
| 250mm diameter | material | 1284.03 |
| 13mm diameter | material | 5.92 |
| 20mm diameter | material | 8.3 |
| Gully Trap | material | 76.92 |
| Floor drain 75mm | material | 100.59 |
| Floor cleanout 110mm | material | 100.59 |
| Roof drain | material | 94.67 |
| 20 mm | material | 147.93 |
| 25 mm | material | 184.39 |
| 32 mm | material | 227.24 |
| 40 mm | material | 317.24 |
| 50 mm | material | 461.16 |
| 100 mm | material | 414.2 |
| 150 mm | material | 616.63 |
| 200 mm | material | 2026.06 |
| 250 mm | material | 2520.72 |
| 100 mm | material | 587.04 |
| 150 mm | material | 1059.17 |
| 200 mm | material | 2071.01 |
| Altitude control valve assembly, size 200 mm | material | 22426.1 |
| GRP water tanks capacity of each 1000 liter complete with all fittings, all valves and concrete pad | material | 828.4 |
| Water Heater 30ltr | material | 81.12 |
| Supply, install, connection, testing and commssionigs horizontal bladder type pressure tank with capacity 1500 liter according to manufacturer's detail and specification - PS-PT-1 | material | 37869.9 |
| Supply, install, connection, testing and commssionigs horizontal bladder type pressure tank with capacity 300 liter according to manufacturer's detail and specification - PS-PT-2 | material | 14201.2 |
| Chemical DosingTank (CDT) 6000 liters capacity polytheylene tank With pump assembly. | material | 56804.9 |
| Actual capacity 1.0 Ton | material | 355.03 |
| Actual capacity 1.5 Ton | material | 355.03 |
| Actual capacity 2.0 Ton | material | 5325.46 |
| Air Flow 280 l/s @ 150 pa | material | 88.76 |
| Air Flow 3200 l/s @ 100 pa | material | 177.51 |
| Air Flow 110 l/s @ 50 pa | material | 76.92 |
| Air Flow 70 l/s @ 50 pa | material | 65.09 |
| Air Flow 35 l/s @ 35 pa | material | 59.17 |
| Air Flow 105 l/s @ 50 pa | material | 71.01 |
| Air Flow 180 l/s @ 0.01 pa | material | 88.76 |
| Supply and install flexible duct with insulation; size 8 inch dia. | material | 21.38 |
| Supply and install flexible duct with insulation; size 10 inch dia. | material | 23.67 |
| Package Unit 57.4 kW "thermal" | material | 1775.15 |
| Variable Air Volume (VAV 01) | material | 59.17 |
| Variable Air Volume (VAV 02) | material | 59.17 |
| Variable Air Volume (VAV 03) | material | 59.17 |
| Variable Air Volume (VAV 04) | material | 59.17 |
| Variable Air Volume (VAV 05) | material | 59.17 |
| Variable Air Volume (VAV 06) | material | 59.17 |
| Galvanized sheet metal ducts | material | 11.83 |
| Supply Liner Slot diffuser 3 slots 1 inch | material | 53.26 |
| Return Liner Slot diffuser 3 slots 1 inch | material | 53.26 |
| Exhaust Grill 150mm x 150mm | material | 53.26 |
| Exhast Air fan 515 l/s @ 150 pa | material | 88.76 |
| Exhast Air fan 3200 l/s @ 100 pa | material | 118.34 |
| Sand trap louver 2400mm x 1000mm | material | 295.86 |
| Sound attenuator size 1050 x 650 x 1000 m | material | 118.34 |
| Fire suppression system FM200 57 kg fill capacity consists of 2 cylinders, duty + standby, complete with all required mechanical, electrical , and control items to install, test, and operate the system. | material | 5325.46 |
| Fire suppression system NOVEC 1230 134.1 kg fill capacity consists of 2 cylinders, duty + standby, complete with all required mechanical, electrical , and control items to install, test, and operate the system. | material | 10059.2 |
| Fire suppression system NOVEC 1230 29.2 kg fill capacity consists of 2 cylinders, duty + standby, complete with all required mechanical, electrical , and control items to install, test, and operate the system. | material | 4142.03 |
| Fire suppression system NOVEC 1230 53.5 kg fill capacity consists of 2 cylinders, duty + standby, complete with all required mechanical, electrical , and control items to install, test, and operate the system. | material | 4733.74 |
| Fire suppression system NOVEC 1230 82.3 kg fill capacity consists of 2 cylinders, duty + standby, complete with all required mechanical, electrical , and control items to install, test, and operate the system. | material | 8875.77 |
| Fire suppression system NOVEC 1230 42.5 kg fill capacity consists of 2 cylinders, duty + standby, complete with all required mechanical, electrical , and control items to install, test, and operate the system. | material | 4497.06 |
| Supply and install steel ladder with cage at pump room for as per drawings and specification. | material | 591.72 |
| Overhead Travelling Crane; lifting capacity 1.50 ton manual type all to manufacturer's detail and specifications. - PS-OC-1 | material | 14325.5 |
| Hot dipped Galvanized steel Trench Grating | material | 14.22 |
| Hot dipped Galvanized steel Channel Cover Plate | material | 29.59 |
| Steel Frame and Cover 1200 x 1200 | material | 82.84 |
| Vent Cowl (Standard Size) | material | 29.59 |
| Steel Handrail of 1.2m height | material | 29.59 |
| 30W LED linear Pendant lighting | material | 53.92 |
| 30W LED Emergency linear Pendant lighting | material | 81.6 |
| 47W LED linear Pendant lighting | material | 94.1 |
| 47W LED Emergency linear Pendant lighting | material | 112.24 |
| 13W recess mounted LED down light fitting | material | 38.27 |
| 13W recess emergency mounted LED down light fitting with 1.5 Hr Battery | material | 82.27 |
| 10.4W LED Exit light with 1.5 Hr Battery | material | 62.13 |
| Distribution board (MDB-PR-01) | material | 4953.63 |
| Distribution board (LPDB-PR-01) | material | 529.97 |
| Distribution board (MDB-CB-01) | material | 2056.89 |
| Distribution board (LPDB-CR-01) | material | 928.33 |
| 13A,1? 230V Twin socket outlet with switch | material | 29.39 |
| 13A,1? 230V Industrial socket outlet with switch | material | 45.14 |
| 13A, Twin Socket outlet, Weather Proof | material | 40.18 |
| 400A, 3P Disconnect switch | material | 699.09 |
| 30A, 2P AC Disconnect Switch | material | 66.52 |
| 30A, 3P AC Disconnect Switch | material | 112.43 |
| 60A, 3P AC Disconnect Switch | material | 232.01 |
| 20A Duplex Receptacle Floor Mounted | material | 67.47 |
| Single gang Lighting switch | material | 37.41 |
| Double gang Lighting switch | material | 39.13 |
| 2way Single gang Lighting switch | material | 41.71 |
| Cable Tray 300 mm X 100 mm | material | 23.29 |
| 4CX6 Cu. XLPE FRLSZH Cable | material | 3.72 |
| 4CX10 Cu. XLPE FRLSZH Cable | material | 4.77 |
| 4CX16 Cu. XLPE FRLSZH Cable | material | 6.68 |
| 4CX25 Cu. XLPE FRLSZH Cable | material | 10.02 |
| 4CX35 Cu. XLPE FRLSZH Cable | material | 14.41 |
| 4CX185 Cu. XLPE FRLSZH Cable | material | 53.45 |
| 120mm2 Tinned copper wire | material | 9.35 |
| Grounding rod 20mmX3m | material | 18.9 |
| Grounding rod with Pit 20mmX3m | material | 37.41 |
| Earthing Bar | material | 98.4 |
| Cu earth strip 25X4 mm | material | 20.04 |
| 1.5m Air terminal | material | 147.36 |
| 4mm2 Cu./FRLSZH Cable | material | 1.15 |
| 6mm2 Cu./FRLSZH Cable | material | 1.24 |
| 10mm2 Cu./FRLSZH Cable | material | 1.62 |
| 16mm2 Cu./FRLSZH Cable | material | 1.62 |
| 95mm2 Cu./FRLSZH Cable | material | 8.49 |
| 120mm2 Cu./FRLSZH Cable | material | 9.73 |
| 30KVA, 400V, 3PH, 60Hz UPS | material | 10290 |
| CB-UPS-01 panel | material | 240.79 |
| Supply, install and connection of a SCADA server cum workstation complete with network rack, network switch, sensors, printer, armoured cables with cable tray & conduits, level transmitter, liquid flow meter, quality sensor (COD,BOD,pH), pressure transmit | material | 5015.76 |
| Fire Alarm Control panel with fire alarm zoning with Mimic panel with fire alarm zoning | material | 801.21 |
| Supply, install to site and installation of the Aspirating Smoke Detector complete with accessories and pipes | material | 24.62 |
| Supply, install to site and installation of the addressable manual call point with operation safety glass breaking and pushbutton | material | 24.34 |
| Supply, install to site and installation of the photoelectric smoke detector with base | material | 29.3 |
| Supply, install to site and installation of the heat detector with base | material | 30.06 |
| Supply, install to site and installation of multi criteria sensors with base | material | 35.5 |
| Supply, install to site and installation of Hydrogen detector | material | 63.85 |
| Supply, install to site and installation of Duct detector | material | 26.53 |
| Sounder With Beacon | material | 77.88 |
| Remote LED Indicator | material | 41.13 |
| Single Channel Interface Module | material | 102.41 |
| Addressable Control module for Sounders | material | 32.93 |
| Addressable relay module for interface | material | 30.92 |
| Addressable monitor module for interface | material | 34.93 |
| Supply, install to site and installation Fire loop cable | material | 1.81 |
| Supply, install to site and installation of power cable | material | 1.34 |
| Fire Fighter’s Telephone Centre | material | 511.07 |
| Fireman’s Telephone Jack | material | 613.1 |
| Voice Command Center | material | 4.39 |
| DACT (Auto - Dailer) for 24x7 Civil Defence | material | 0.95 |
| Transmission Communication cable - Fiber Optics | material | 4.39 |
| Transmission Communication cable - Ethernet Cable | material | 0.95 |
| Supply, install to site and installation of power supply system for fire alarm control panel | material | 511.07 |
| Pump Set for Irrigation Supply (IRR01 / IRR02) | material | 23118.4 |
| Pump Set for Drainage System | material | 24396.5 |
| Pump Set for SW Force Main (1W+1S) | material | 8037.92 |
| Pump Set for FF Supply (FP01.FP02) | material | 30284.1 |
| Pump Set for Domestic Supply (BP01 / BP02) | material | 13609.5 |
| acoustical tiles suspended ceiling 600x600mm concealed metal | material | 11.83 |
| Hollow Concrete masonry unit, 100 mm thick wall for internal block | material | 2.86 |
| D2 - 1070 mm width x 2225 mm height | material | 94.03 |
| D3 - 1200 mm width x 3000 mm height | material | 140.61 |
| Roller Shuter - 3000mm width x 4000mm height | material | 468.64 |
| D1' 1900mm width x 2950mm height | material | 218.92 |
| D2' 1200mm width x 2150mm height | material | 100.78 |
| D3' 800mm width x 2050mm height | material | 64.05 |
| D4' 1700mm width x 2050mm height | material | 136.11 |
| 1500 mm width x 1200 mm high (W01) | material | 63.91 |
| 1200 mm width x 1200 mm high (W02) | material | 51.14 |
| Supply and installation of western water closet, flush tank type, heavy duty, one piece SASO certified, approval of client, dimesion not less than 40 cm width, 68 cm length including all other accessories as per drawings and specification | material | 53.25 |
| Supply and installation of urinal, heavy duty, one piece SASO certified, approval of client, including all other accessories as per drawings and specification | material | 53.25 |
| Supply and installation of Bib tap with Perenial Hose (BPH) with stainless steel flexible hose and cast brass chromeplated hand including all other accessories to complete as per drawing and specification. | material | 7.1 |
| Supply, installation, testing and commissioning of Lavatory / wash basin with counter for toilets, built in soap dispenser, mixer, single lever arm including all accessories as per drawings and specification and to the approval of the client | material | 53.25 |
| Provide and install paper towel dispenser, surface mounted, satin finish stainless steel as per approved sample including accessories. | material | 8.88 |
| Provide and install mirror as per approved sample including frames, backing and all accessories to complete. | material | 28.4 |
| Provide and install towel ring, surface mounted, satin finish stainless steel as per approved sample including accessories. | material | 4.27 |
| Hose Bib | material | 7.1 |
| Valve Chamber | material | 53.25 |
| Retarding Chamber | material | 35.5 |
| Inspection Chamber | material | 106.51 |
| Neutralization pit 1000x1000mm | material | 106.51 |
| 25mm diameter | material | 0.72 |
| 32mm diameter | material | 1.09 |
| 40mm diameter | material | 1.43 |
| 50mm diameter | material | 1.78 |
| 75mm diameter | material | 2.49 |
| 80mm diameter | material | 2.86 |
| 100mm diameter | material | 3.55 |
| 110mm diameter | material | 4.27 |
| 15mm diameter | material | 0.89 |
| 20mm diameter | material | 1.26 |
| 25mm diameter | material | 1.6 |
| 32mm diameter | material | 1.98 |
| 40mm diameter | material | 2.15 |
| 50mm diameter | material | 2.86 |
| 100mm diameter | material | 214.79 |
| 150mm diameter | material | 282.25 |
| 200mm diameter | material | 318.84 |
| 250mm diameter | material | 385.21 |
| 13mm diameter | material | 1.78 |
| 20mm diameter | material | 2.49 |
| Gully Trap | material | 23.08 |
| Floor drain 75mm | material | 30.18 |
| Floor cleanout 110mm | material | 30.18 |
| Roof drain | material | 28.4 |
| GRP water tanks capacity of each 1000 liter complete with all fittings, all valves and concrete pad | material | 248.52 |
| Water Heater 30ltr | material | 24.34 |
| Actual capacity 1.0 Ton | material | 106.51 |
| Supply and install flexible duct with insulation; size 8 inch dia. | material | 6.41 |
| Supply and install flexible duct with insulation; size 10 inch dia. | material | 7.1 |
| Package Unit 57.4 kW "thermal" | material | 532.55 |
| Variable Air Volume (VAV 01) | material | 17.75 |
| Variable Air Volume (VAV 02) | material | 17.75 |
| Variable Air Volume (VAV 03) | material | 17.75 |
| Variable Air Volume (VAV 04) | material | 17.75 |
| Variable Air Volume (VAV 05) | material | 17.75 |
| Variable Air Volume (VAV 06) | material | 17.75 |
| Exhast Air fan 515 l/s @ 150 pa | material | 26.63 |
| Exhast Air fan 3200 l/s @ 100 pa | material | 35.5 |
| Fire suppression system FM200 57 kg fill capacity consists of 2 cylinders, duty + standby, complete with all required mechanical, electrical , and control items to install, test, and operate the system. | material | 1597.64 |
| Fire suppression system NOVEC 1230 134.1 kg fill capacity consists of 2 cylinders, duty + standby, complete with all required mechanical, electrical , and control items to install, test, and operate the system. | material | 3017.76 |
| Fire suppression system NOVEC 1230 29.2 kg fill capacity consists of 2 cylinders, duty + standby, complete with all required mechanical, electrical , and control items to install, test, and operate the system. | material | 1242.61 |
| Fire suppression system NOVEC 1230 53.5 kg fill capacity consists of 2 cylinders, duty + standby, complete with all required mechanical, electrical , and control items to install, test, and operate the system. | material | 1420.12 |
| Fire suppression system NOVEC 1230 82.3 kg fill capacity consists of 2 cylinders, duty + standby, complete with all required mechanical, electrical , and control items to install, test, and operate the system. | material | 2662.73 |
| Fire suppression system NOVEC 1230 42.5 kg fill capacity consists of 2 cylinders, duty + standby, complete with all required mechanical, electrical , and control items to install, test, and operate the system. | material | 1349.12 |
| Supply and install steel ladder with cage at pump room for as per drawings and specification. | material | 177.52 |
| Overhead Travelling Crane; lifting capacity 1.50 ton manual type all to manufacturer's detail and specifications. - PS-OC-1 | material | 4297.65 |
| Hot dipped Galvanized steel Trench Grating | material | 4.27 |
| Hot dipped Galvanized steel Channel Cover Plate | material | 8.88 |
| Steel Frame and Cover 1200 x 1200 | material | 24.85 |
| Vent Cowl (Standard Size) | material | 8.88 |
| Steel Handrail of 1.2m height | material | 8.88 |
| 30W LED linear Pendant lighting | material | 16.18 |
| 30W LED Emergency linear Pendant lighting | material | 24.48 |
| 47W LED linear Pendant lighting | material | 28.23 |
| 47W LED Emergency linear Pendant lighting | material | 33.67 |
| 13W recess mounted LED down light fitting | material | 11.48 |
| 13W recess emergency mounted LED down light fitting with 1.5 Hr Battery | material | 24.68 |
| 10.4W LED Exit light with 1.5 Hr Battery | material | 18.64 |
| Distribution board (MDB-PR-01) | material | 1486.09 |
| Distribution board (LPDB-PR-01) | material | 158.99 |
| Distribution board (MDB-CB-01) | material | 617.07 |
| Distribution board (LPDB-CR-01) | material | 278.5 |
| 13A,1? 230V Twin socket outlet with switch | material | 8.82 |
| 13A,1? 230V Industrial socket outlet with switch | material | 13.54 |
| 13A, Twin Socket outlet, Weather Proof | material | 12.05 |
| 400A, 3P Disconnect switch | material | 209.73 |
| 30A, 2P AC Disconnect Switch | material | 19.96 |
| 30A, 3P AC Disconnect Switch | material | 33.73 |
| 60A, 3P AC Disconnect Switch | material | 69.6 |
| 20A Duplex Receptacle Floor Mounted | material | 20.24 |
| Single gang Lighting switch | material | 11.22 |
| Double gang Lighting switch | material | 11.74 |
| 2way Single gang Lighting switch | material | 12.51 |
| Cable Tray 300 mm X 100 mm | material | 6.99 |
| 4CX6 Cu. XLPE FRLSZH Cable | material | 1.12 |
| 4CX10 Cu. XLPE FRLSZH Cable | material | 1.43 |
| 4CX16 Cu. XLPE FRLSZH Cable | material | 2 |
| 4CX25 Cu. XLPE FRLSZH Cable | material | 3.01 |
| 4CX35 Cu. XLPE FRLSZH Cable | material | 4.32 |
| 4CX185 Cu. XLPE FRLSZH Cable | material | 16.03 |
| 120mm2 Tinned copper wire | material | 2.81 |
| Grounding rod 20mmX3m | material | 5.67 |
| Grounding rod with Pit 20mmX3m | material | 11.22 |
| Earthing Bar | material | 29.52 |
| Cu earth strip 25X4 mm | material | 6.01 |
| 1.5m Air terminal | material | 44.21 |
| 4mm2 Cu./FRLSZH Cable | material | 0.34 |
| 6mm2 Cu./FRLSZH Cable | material | 0.37 |
| 10mm2 Cu./FRLSZH Cable | material | 0.49 |
| 16mm2 Cu./FRLSZH Cable | material | 0.49 |
| 95mm2 Cu./FRLSZH Cable | material | 2.55 |
| 120mm2 Cu./FRLSZH Cable | material | 2.92 |
| 30KVA, 400V, 3PH, 60Hz UPS | material | 3086.99 |
| CB-UPS-01 panel | material | 72.24 |
| Supply, install and connection of a SCADA server cum workstation complete with network rack, network switch, sensors, printer, armoured cables with cable tray & conduits, level transmitter, liquid flow meter, quality sensor (COD,BOD,pH), pressure transmit | material | 1504.73 |
| Fire Alarm Control panel with fire alarm zoning with Mimic panel with fire alarm zoning | material | 240.36 |
| Supply, install to site and installation of the Aspirating Smoke Detector complete with accessories and pipes | material | 7.39 |
| Supply, install to site and installation of the addressable manual call point with operation safety glass breaking and pushbutton | material | 7.3 |
| Supply, install to site and installation of the photoelectric smoke detector with base | material | 8.79 |
| Supply, install to site and installation of the heat detector with base | material | 9.02 |
| Supply, install to site and installation of multi criteria sensors with base | material | 10.65 |
| Supply, install to site and installation of Hydrogen detector | material | 19.15 |
| Supply, install to site and installation of Duct detector | material | 7.96 |
| Sounder With Beacon | material | 23.36 |
| Remote LED Indicator | material | 12.34 |
| Single Channel Interface Module | material | 30.72 |
| Addressable Control module for Sounders | material | 9.88 |
| Addressable relay module for interface | material | 9.28 |
| Addressable monitor module for interface | material | 10.48 |
| Supply, install to site and installation Fire loop cable | material | 0.54 |
| Supply, install to site and installation of power cable | material | 0.4 |
| Fire Fighter’s Telephone Centre | material | 153.32 |
| Fireman’s Telephone Jack | material | 183.93 |
| Voice Command Center | material | 1.32 |
| DACT (Auto - Dailer) for 24x7 Civil Defence | material | 0.29 |
| Transmission Communication cable - Fiber Optics | material | 1.32 |
| Transmission Communication cable - Ethernet Cable | material | 0.29 |
| Supply, install to site and installation of power supply system for fire alarm control panel | material | 153.32 |
| Hollow Concrete masonry unit, 100 mm thick wall for internal block | material | 19.09 |
| D2 - 1070 mm width x 2225 mm height | material | 626.84 |
| D3 - 1200 mm width x 3000 mm height | material | 937.4 |
| Roller Shuter - 3000mm width x 4000mm height | material | 3124.27 |
| D1' 1900mm width x 2950mm height | material | 1459.44 |
| D2' 1200mm width x 2150mm height | material | 671.89 |
| D3' 800mm width x 2050mm height | material | 426.99 |
| D4' 1700mm width x 2050mm height | material | 907.43 |
| 1500 mm width x 1200 mm high (W01) | material | 426.04 |
| 1200 mm width x 1200 mm high (W02) | material | 340.91 |
| Supply and installation of western water closet, flush tank type, heavy duty, one piece SASO certified, approval of client, dimesion not less than 40 cm width, 68 cm length including all other accessories as per drawings and specification | material | 355.03 |
| Supply and installation of urinal, heavy duty, one piece SASO certified, approval of client, including all other accessories as per drawings and specification | material | 355.03 |
| Supply and installation of Bib tap with Perenial Hose (BPH) with stainless steel flexible hose and cast brass chromeplated hand including all other accessories to complete as per drawing and specification. | material | 47.34 |
| Supply, installation, testing and commissioning of Lavatory / wash basin with counter for toilets, built in soap dispenser, mixer, single lever arm including all accessories as per drawings and specification and to the approval of the client | material | 355.03 |
| Provide and install paper towel dispenser, surface mounted, satin finish stainless steel as per approved sample including accessories. | material | 59.17 |
| Provide and install mirror as per approved sample including frames, backing and all accessories to complete. | material | 189.35 |
| Provide and install towel ring, surface mounted, satin finish stainless steel as per approved sample including accessories. | material | 28.44 |
| Hose Bib | material | 47.34 |
| Valve Chamber | material | 355.03 |
| Retarding Chamber | material | 236.69 |
| Inspection Chamber | material | 710.06 |
| Neutralization pit 1000x1000mm | material | 710.06 |
| 25mm diameter | material | 4.77 |
| 32mm diameter | material | 7.25 |
| 40mm diameter | material | 9.54 |
| 50mm diameter | material | 11.83 |
| 75mm diameter | material | 16.61 |
| 80mm diameter | material | 19.09 |
| 100mm diameter | material | 23.67 |
| 110mm diameter | material | 28.44 |
| 15mm diameter | material | 5.92 |
| 20mm diameter | material | 8.4 |
| 25mm diameter | material | 10.69 |
| 32mm diameter | material | 13.17 |
| 40mm diameter | material | 14.32 |
| 50mm diameter | material | 19.09 |
| 100mm diameter | material | 1431.96 |
| 150mm diameter | material | 1881.66 |
| 200mm diameter | material | 2125.6 |
| 250mm diameter | material | 2568.06 |
| 13mm diameter | material | 11.83 |
| 20mm diameter | material | 16.61 |
| Gully Trap | material | 153.85 |
| Floor drain 75mm | material | 201.18 |
| Floor cleanout 110mm | material | 201.18 |
| Roof drain | material | 189.35 |
| GRP water tanks capacity of each 1000 liter complete with all fittings, all valves and concrete pad | material | 1656.81 |
| Water Heater 30ltr | material | 162.25 |
| Actual capacity 1.0 Ton | material | 710.06 |
| Supply and install flexible duct with insulation; size 8 inch dia. | material | 42.76 |
| Supply and install flexible duct with insulation; size 10 inch dia. | material | 47.34 |
| Package Unit 57.4 kW "thermal" | material | 3550.31 |
| Variable Air Volume (VAV 01) | material | 118.34 |
| Variable Air Volume (VAV 02) | material | 118.34 |
| Variable Air Volume (VAV 03) | material | 118.34 |
| Variable Air Volume (VAV 04) | material | 118.34 |
| Variable Air Volume (VAV 05) | material | 118.34 |
| Variable Air Volume (VAV 06) | material | 118.34 |
| Exhast Air fan 515 l/s @ 150 pa | material | 177.52 |
| Exhast Air fan 3200 l/s @ 100 pa | material | 236.69 |
| Fire suppression system FM200 57 kg fill capacity consists of 2 cylinders, duty + standby, complete with all required mechanical, electrical , and control items to install, test, and operate the system. | material | 10650.9 |
| Fire suppression system NOVEC 1230 134.1 kg fill capacity consists of 2 cylinders, duty + standby, complete with all required mechanical, electrical , and control items to install, test, and operate the system. | material | 20118.4 |
| Fire suppression system NOVEC 1230 29.2 kg fill capacity consists of 2 cylinders, duty + standby, complete with all required mechanical, electrical , and control items to install, test, and operate the system. | material | 8284.05 |
| Fire suppression system NOVEC 1230 53.5 kg fill capacity consists of 2 cylinders, duty + standby, complete with all required mechanical, electrical , and control items to install, test, and operate the system. | material | 9467.49 |
| Fire suppression system NOVEC 1230 82.3 kg fill capacity consists of 2 cylinders, duty + standby, complete with all required mechanical, electrical , and control items to install, test, and operate the system. | material | 17751.5 |
| Fire suppression system NOVEC 1230 42.5 kg fill capacity consists of 2 cylinders, duty + standby, complete with all required mechanical, electrical , and control items to install, test, and operate the system. | material | 8994.11 |
| Supply and install steel ladder with cage at pump room for as per drawings and specification. | material | 1183.44 |
| Overhead Travelling Crane; lifting capacity 1.50 ton manual type all to manufacturer's detail and specifications. - PS-OC-1 | material | 28651 |
| Hot dipped Galvanized steel Trench Grating | material | 28.44 |
| Hot dipped Galvanized steel Channel Cover Plate | material | 59.17 |
| Steel Frame and Cover 1200 x 1200 | material | 165.68 |
| Vent Cowl (Standard Size) | material | 59.17 |
| Steel Handrail of 1.2m height | material | 59.17 |
| 30W LED linear Pendant lighting | material | 107.85 |
| 30W LED Emergency linear Pendant lighting | material | 163.2 |
| 47W LED linear Pendant lighting | material | 188.2 |
| 47W LED Emergency linear Pendant lighting | material | 224.47 |
| 13W recess mounted LED down light fitting | material | 76.54 |
| 13W recess emergency mounted LED down light fitting with 1.5 Hr Battery | material | 164.54 |
| 10.4W LED Exit light with 1.5 Hr Battery | material | 124.26 |
| Distribution board (MDB-PR-01) | material | 9907.27 |
| Distribution board (LPDB-PR-01) | material | 1059.94 |
| Distribution board (MDB-CB-01) | material | 4113.78 |
| Distribution board (LPDB-CR-01) | material | 1856.66 |
| 13A,1? 230V Twin socket outlet with switch | material | 58.79 |
| 13A,1? 230V Industrial socket outlet with switch | material | 90.28 |
| 13A, Twin Socket outlet, Weather Proof | material | 80.36 |
| 400A, 3P Disconnect switch | material | 1398.17 |
| 30A, 2P AC Disconnect Switch | material | 133.04 |
| 30A, 3P AC Disconnect Switch | material | 224.85 |
| 60A, 3P AC Disconnect Switch | material | 464.02 |
| 20A Duplex Receptacle Floor Mounted | material | 134.95 |
| Single gang Lighting switch | material | 74.82 |
| Double gang Lighting switch | material | 78.26 |
| 2way Single gang Lighting switch | material | 83.41 |
| Cable Tray 300 mm X 100 mm | material | 46.57 |
| 4CX6 Cu. XLPE FRLSZH Cable | material | 7.44 |
| 4CX10 Cu. XLPE FRLSZH Cable | material | 9.54 |
| 4CX16 Cu. XLPE FRLSZH Cable | material | 13.36 |
| 4CX25 Cu. XLPE FRLSZH Cable | material | 20.04 |
| 4CX35 Cu. XLPE FRLSZH Cable | material | 28.82 |
| 4CX185 Cu. XLPE FRLSZH Cable | material | 106.89 |
| 120mm2 Tinned copper wire | material | 18.71 |
| Grounding rod 20mmX3m | material | 37.79 |
| Grounding rod with Pit 20mmX3m | material | 74.82 |
| Earthing Bar | material | 196.79 |
| Cu earth strip 25X4 mm | material | 40.08 |
| 1.5m Air terminal | material | 294.71 |
| 4mm2 Cu./FRLSZH Cable | material | 2.29 |
| 6mm2 Cu./FRLSZH Cable | material | 2.48 |
| 10mm2 Cu./FRLSZH Cable | material | 3.24 |
| 16mm2 Cu./FRLSZH Cable | material | 3.24 |
| 95mm2 Cu./FRLSZH Cable | material | 16.99 |
| 120mm2 Cu./FRLSZH Cable | material | 19.47 |
| 30KVA, 400V, 3PH, 60Hz UPS | material | 20580 |
| CB-UPS-01 panel | material | 481.58 |
| Supply, install and connection of a SCADA server cum workstation complete with network rack, network switch, sensors, printer, armoured cables with cable tray & conduits, level transmitter, liquid flow meter, quality sensor (COD,BOD,pH), pressure transmit | material | 10031.5 |
| Fire Alarm Control panel with fire alarm zoning with Mimic panel with fire alarm zoning | material | 1602.41 |
| Supply, install to site and installation of the Aspirating Smoke Detector complete with accessories and pipes | material | 49.25 |
| Supply, install to site and installation of the addressable manual call point with operation safety glass breaking and pushbutton | material | 48.67 |
| Supply, install to site and installation of the photoelectric smoke detector with base | material | 58.6 |
| Supply, install to site and installation of the heat detector with base | material | 60.13 |
| Supply, install to site and installation of multi criteria sensors with base | material | 71.01 |
| Supply, install to site and installation of Hydrogen detector | material | 127.7 |
| Supply, install to site and installation of Duct detector | material | 53.06 |
| Sounder With Beacon | material | 155.76 |
| Remote LED Indicator | material | 82.27 |
| Single Channel Interface Module | material | 204.81 |
| Addressable Control module for Sounders | material | 65.85 |
| Addressable relay module for interface | material | 61.84 |
| Addressable monitor module for interface | material | 69.86 |
| Supply, install to site and installation Fire loop cable | material | 3.63 |
| Supply, install to site and installation of power cable | material | 2.67 |
| Fire Fighter’s Telephone Centre | material | 1022.15 |
| Fireman’s Telephone Jack | material | 1226.19 |
| Voice Command Center | material | 8.78 |
| DACT (Auto - Dailer) for 24x7 Civil Defence | material | 1.91 |
| Transmission Communication cable - Fiber Optics | material | 8.78 |
| Transmission Communication cable - Ethernet Cable | material | 1.91 |
| Supply, install to site and installation of power supply system for fire alarm control panel | material | 1022.15 |
| Single Catch Basin 1000mm x 1000mm | material | 5153.86 |
| Double Catch Basin 1200mm x 2300mm | material | 6739.67 |
| pipe line O.D 32 mm PN 10, in depth 0 to 1.5 m | material | 19.83 |
| pipe line O.D 40 mm PN 10, in depth 0 to 1.5 m | material | 28.13 |
| pipe line O.D 50 mm PN 10, in depth 0 to 1.5 m | material | 39.64 |
| Gate valve 50 mm PN16 | material | 951.48 |
| Direct Burried Gate valve 40 mm PN16 | material | 951.48 |
| Excavation for Trench size 40cm wide and 80cm deep (for 1 cable) | material | 27.5 |
| Excavation for Trench Size 60cm wide and 80cm deep (for 2 cables) | material | 27.5 |
| Excavation for Trench Size 90cm wide and 80cm deep (for 3 cables) | material | 27.5 |
| Excavation for Trench Size 180cm wide and 80cm deep (for 6 cables) | material | 27.5 |
| Excavation for Trench Size 210 cm wide and 80cm deep (for 7 cables) | material | 27.5 |
| Excavation for Trench Size 240cm wide and 80cm deep (for 8 cables) | material | 27.5 |
| Duct bank for (33) cables | material | 1429.14 |
| Duct bank for (21) cables | material | 950.2 |
| Duct bank for (15) cables | material | 711.69 |
| HV Cable Road Crossing | material | 411.8 |
| Lighting poles with 1 arm, height of (12) meters, including the power distribution box, cables, and RCC foundation. | material | 2409.4 |
| Lighting poles with 2 arms, height of (12) meters, including the power distribution box, cables, and RCC foundation. | material | 2888.34 |
| Man Left | equipment |  |
| Street Lighting( LED) Luminaire of Output ? 20,965 lumen complete with control gear and lamp, (129.1) WATT. | material | 392.61 |
| Depth Between 0m to 1.50m | material | 160.5 |
| Depth Between 1.50m to 2.50m | material | 171.37 |
| Depth > 2.50m | material | 262.81 |
| Depth Between 0m to 1.50m | material | 183.52 |
| Depth Between 1.50m to 2.50m | material | 196.95 |
| Depth Between 2.50m to 3.50m | material | 287.11 |
| Depth Between 3.50m to 4.50m | material | 305.01 |
| Depth Between 4.50m to 5.50m | material | 376.63 |
| Depth > 5.50m | material | 391.33 |
| HDPE Force Main (PE 100, SDR 11, PN 16 bar) DN 160 mm diameter, in trenches depth: 0- 1.5m | material | 200.79 |
| HDPE Force Main (PE 100, SDR 11, PN 16 bar) DN 160 mm diameter, in trenches depth: 1.51- 2.5m | material | 220.6 |
| Air valves with dia 50 mm | material | 6343.22 |
| Gate valves Dia 50 mm | material | 1189.35 |
| Air valve chamber (1000x 1000 mm) | material | 7929.02 |
| Glass Fused Bolted (GLS) 1500 m3 Tank with associated accessories & manufacturer recommendation for the foundation | material | 406424 |
| Including earthing of lighting poles, masts, feeder pillars, unit substations and LV feeders. | material | 115.1 |
| Depth: 0 - 1.5m | material | 6806.81 |
| Depth: 1.51 - 2.5m | material | 782.03 |
| Depth: 2.51 - 3.5m | material | 11192.7 |
| Depth: 3.51 - 4.5m | material | 13250.4 |
| Depth: 4.51 - 5.5m | material | 14760.8 |
| Depth > 5.50m | material | 17126.7 |
| Pressure–compensating bubblers 110 Lit/Hr | material | 11.51 |
| Flushing Bronze gate valve dia 1.5" inside PVC box | material | 1189.35 |
| Air release valve 1.5" inside PVC box | material | 1189.35 |
| Extra flexible pressure compensating on surface inline dripline`s, O.D. is 16.1 mm | material | 9.59 |
| Electrical Solenoid Valve ( 1.5") inside PVC box | material | 951.48 |
| Electrical Solenoid Valve ( 2") inside PVC box | material | 1189.35 |
| Quick coupling valve 1" inside a round valve box 10" size with a manual gate valve, hose swivel and key with all accessories | material | 1982.26 |
| Advanced Irrigation controller subject to client approval, can connect with Centarl Control system and cabable to integrate with Smart City systems,BMS or Scada system ,Can record the real flow rate per stations | material | 19822.5 |
| Decoder cables 12 AWG between valves and controllers, The cables shall be pulled through 32? UPVC conduit and inspection 10" round valve box every 100 meters, as per standard specification and drawings | material | 8.31 |
| Preparing the irrigation program for the entire system and providing technical services for monitoring and controlling the central irrigation systems by linking the controller with the Main Program System (by GSM). | material | 23787.1 |
| Glass Fused Bolted (GLS) 1500 m3 Tank with associated accessories & manufacturer recommendation for the foundation | material | 406424 |
| Street Lighting panels LCP (01) | material | 15832.5 |
| Manhole Type 2 (1600 x 1600 x 2000) | material | 3248.98 |
| Foundation | material | 951.48 |
| 100 mm thickness lean concrete under the foundation | material | 277.51 |
| Grade Beams | material | 951.48 |
| Slab on grade | material | 951.48 |
| Steel Fixer Helper | labor |  |
| Columns | material | 951.48 |
| Beams | material | 951.48 |
| Slabs | material | 951.48 |
| Lightweight Concrete Roof insulation as per Architect's specification | material | 35.81 |
| Hollow Concrete masonry unit, 150 mm thick wall for internal block | material | 79.29 |
| Insulated brickwork. with expanded polystyrene 200mm thick for External block | material | 87.6 |
| Hollow Concrete masonry unit, 300 mm thick wall for External block | material | 95.27 |
| Plasterer | labor |  |
| Plasterer Helper | labor |  |
| 2 perpendicular layers of cold bitumen coats | material | 8.31 |
| 2 layer of 4mm HDPE membrane, 2 perpendicular layers cold bitumen coats | material | 35.81 |
| 1 layer EPOXY Paint 300 micron | material | 31.97 |
| Membrane fully bonded to prime deck and upstand | material | 35.81 |
| Geotextile Filter membrane uv resistance | material | 4.48 |
| 85mm thick thermal insulation | material | 28.13 |
| 1.5mm thick epdm waterproofing membrane | material | 24.3 |
| Supply and install External plastering to walls and columns min. 15mm thick with cement mortar of specified grade including galvanized mesh, corner beads, angle beads, CE bonds to rough and smooth plaster complete the work as per drawing & specification. | material | 24.3 |
| Supply and install internal plastering to walls and columns min. 15mm thick with cement mortar of specified grade including galvanized mesh, corner beads, angle beads, CE bonds to rough and smooth plaster complete the work as per drawing & specification. | material | 24.3 |
| Supply and install 2 coats of weatherproof paint at walls including one prime coat and two coats and putty to give smooth Surface as a base for paint including fiberglass tape to joints and all other accessories as per manufacturers approved specification | material | 31.97 |
| Supply and install 2 coats of epoxy paint at walls including one prime coat and two coats and putty to give smooth Surface as a base for paint including fiberglass tape to joints and all other accessories as per manufacturers approved specification | material | 31.97 |
| Supply and install 300*300mm glazed ceramic wall tiles on cement mortar and including rough and smooth plaster, galvanized mesh, corner beads, angle beads, CE bonds | material | 47.96 |
| Acid Proof Tiles | material |  |
| Supply and install 600*600mm porcelain tiles with approved quality on 30 mm mortar including sand fill material as approved by the Client | material | 47.96 |
| Supply and install 12.5mm thk, gypsum board suspended ceiling including suspension system, paints as required specification and material as approved by the Client including frames supports, access openings and all other accessories to complete as shown in | material | 63.94 |
| acoustical tiles suspended ceiling 600x600mm concealed metal | material | 79.29 |
| D1 - 1100 mm width x 2200 mm height | material | 2110.78 |
| D4 - 1800 mm width x 3000 mm height | material | 4710.09 |
| Actual capacity 1.5 Ton | material | 2378.71 |
| Actual capacity 2.0 Ton | material | 35680.6 |
| Air Flow 280 l/s @ 150 pa | material | 594.68 |
| Air Flow 3200 l/s @ 100 pa | material | 1189.35 |
| Air Flow 110 l/s @ 50 pa | material | 515.38 |
| Air Flow 70 l/s @ 50 pa | material | 436.1 |
| Air Flow 35 l/s @ 35 pa | material | 396.45 |
| Air Flow 105 l/s @ 50 pa | material | 475.74 |
| Air Flow 180 l/s @ 0.01 pa | material | 594.68 |
| Galvanized sheet metal ducts | material | 79.29 |
| Supply Liner Slot diffuser 3 slots 1 inch | material | 356.81 |
| Return Liner Slot diffuser 3 slots 1 inch | material | 356.81 |
| Exhaust Grill 150mm x 150mm | material | 356.81 |
| Sand trap louver 2400mm x 1000mm | material | 1982.26 |
| Sound attenuator size 1050 x 650 x 1000 m | material | 792.9 |
| 4.5 KG CO2 Type Fire Extinguishers | material | 2775.16 |
| 6 KG ABC Type Fire Extinguishers | material | 1982.26 |
| 15 mm dia. | material | 63.94 |
| 25 mm dia. | material | 79.29 |
| 32 mm dia. | material | 95.27 |
| 40 mm dia. | material | 118.94 |
| 80 mm dia. | material | 158.58 |
| 200 mm dia. | material | 198.23 |
| 250 mm dia. | material | 277.51 |
| 20 mm | material | 991.12 |
| 25 mm | material | 1235.39 |
| 32 mm | material | 1522.5 |
| 40 mm | material | 2125.49 |
| 50 mm | material | 3089.76 |
| 100 mm | material | 2775.16 |
| 150 mm | material | 4131.4 |
| 200 mm | material | 13574.6 |
| 250 mm | material | 16888.8 |
| 100 mm | material | 3933.18 |
| 150 mm | material | 7096.47 |
| 200 mm | material | 13875.8 |
| Altitude control valve assembly, size 200 mm | material | 150255 |
| Walls | material | 1030.77 |
| Hollow Concrete masonry unit, 100 mm thick wall for internal block | material | 63.94 |
| D2 - 1070 mm width x 2225 mm height | material | 2099.91 |
| D3 - 1200 mm width x 3000 mm height | material | 3140.28 |
| Roller Shuter - 3000mm width x 4000mm height | material | 10466.3 |
| D1' 1900mm width x 2950mm height | material | 4889.14 |
| D2' 1200mm width x 2150mm height | material | 2250.82 |
| D3' 800mm width x 2050mm height | material | 1430.42 |
| D4' 1700mm width x 2050mm height | material | 3039.88 |
| 1500 mm width x 1200 mm high (W01) | material | 1427.22 |
| 1200 mm width x 1200 mm high (W02) | material | 1142.04 |
| 1000 mm width x 2400 mm high (L1) | material | 1902.97 |
| Supply and install steel ladder with cage at pump room for as per drawings and specification. | material | 3964.51 |
| Overhead Travelling Crane; lifting capacity 1.50 ton manual type all to manufacturer's detail and specifications. - PS-OC-1 | material | 95980.8 |
| Hot dipped Galvanized steel Trench Grating | material | 95.27 |
| Hot dipped Galvanized steel Channel Cover Plate | material | 198.23 |
| Steel Frame and Cover 1200 x 1200 | material | 555.03 |
| Vent Cowl (Standard Size) | material | 198.23 |
| Steel Handrail of 1.2m height | material | 198.23 |
| Actual capacity 1.0 Ton | material | 2378.71 |
| Supply and install flexible duct with insulation; size 8 inch dia. | material | 143.23 |
| Supply and install flexible duct with insulation; size 10 inch dia. | material | 158.58 |
| Package Unit 57.4 kW "thermal" | material | 11893.5 |
| Variable Air Volume (VAV 01) | material | 396.45 |
| Variable Air Volume (VAV 02) | material | 396.45 |
| Variable Air Volume (VAV 03) | material | 396.45 |
| Variable Air Volume (VAV 04) | material | 396.45 |
| Variable Air Volume (VAV 05) | material | 396.45 |
| Variable Air Volume (VAV 06) | material | 396.45 |
| Exhast Air fan 515 l/s @ 150 pa | material | 594.68 |
| Exhast Air fan 3200 l/s @ 100 pa | material | 792.9 |
| Fire suppression system FM200 57 kg fill capacity consists of 2 cylinders, duty + standby, complete with all required mechanical, electrical , and control items to install, test, and operate the system. | material | 35680.6 |
| Fire suppression system NOVEC 1230 134.1 kg fill capacity consists of 2 cylinders, duty + standby, complete with all required mechanical, electrical , and control items to install, test, and operate the system. | material | 67396.7 |
| Fire suppression system NOVEC 1230 29.2 kg fill capacity consists of 2 cylinders, duty + standby, complete with all required mechanical, electrical , and control items to install, test, and operate the system. | material | 27751.6 |
| Fire suppression system NOVEC 1230 53.5 kg fill capacity consists of 2 cylinders, duty + standby, complete with all required mechanical, electrical , and control items to install, test, and operate the system. | material | 31716.1 |
| Fire suppression system NOVEC 1230 82.3 kg fill capacity consists of 2 cylinders, duty + standby, complete with all required mechanical, electrical , and control items to install, test, and operate the system. | material | 59467.7 |
| Fire suppression system NOVEC 1230 42.5 kg fill capacity consists of 2 cylinders, duty + standby, complete with all required mechanical, electrical , and control items to install, test, and operate the system. | material | 30130.3 |
| Distribution board (MDB-PR-01) | material | 33189.3 |
| Distribution board (LPDB-PR-01) | material | 3550.79 |
| Distribution board (MDB-CB-01) | material | 13781.1 |
| Distribution board (LPDB-CR-01) | material | 6219.8 |
| CB-UPS-01 panel | material | 1613.3 |
| 30W LED linear Pendant lighting | material | 361.28 |
| 30W LED Emergency linear Pendant lighting | material | 546.72 |
| 47W LED linear Pendant lighting | material | 630.48 |
| 47W LED Emergency linear Pendant lighting | material | 751.98 |
| 13W recess mounted LED down light fitting | material | 256.42 |
| 13W recess emergency mounted LED down light fitting with 1.5 Hr Battery | material | 551.2 |
| 10.4W LED Exit light with 1.5 Hr Battery | material | 416.27 |
| 13A,1? 230V Twin socket outlet with switch | material | 196.95 |
| 13A,1? 230V Industrial socket outlet with switch | material | 302.45 |
| 13A, Twin Socket outlet, Weather Proof | material | 269.21 |
| 400A, 3P Disconnect switch | material | 4683.88 |
| 30A, 2P AC Disconnect Switch | material | 445.69 |
| 30A, 3P AC Disconnect Switch | material | 753.25 |
| 60A, 3P AC Disconnect Switch | material | 1554.47 |
| 20A Duplex Receptacle Floor Mounted | material | 452.08 |
| Single gang Lighting switch | material | 250.66 |
| Double gang Lighting switch | material | 262.17 |
| 2way Single gang Lighting switch | material | 279.44 |
| Cable Tray 300 mm X 100 mm | material | 156.02 |
| 4CX6 Cu. XLPE FRLSZH Cable | material | 24.94 |
| 4CX10 Cu. XLPE FRLSZH Cable | material | 31.97 |
| 4CX16 Cu. XLPE FRLSZH Cable | material | 44.76 |
| 4CX25 Cu. XLPE FRLSZH Cable | material | 67.14 |
| 4CX35 Cu. XLPE FRLSZH Cable | material | 96.55 |
| 4CX185 Cu. XLPE FRLSZH Cable | material | 358.08 |
| 120mm2 Tinned copper wire | material | 62.67 |
| Supply, install and connection of a SCADA server cum workstation complete with network rack, network switch, sensors, printer, armoured cables with cable tray & conduits, level transmitter, liquid flow meter, quality sensor (COD,BOD,pH), pressure transmit | material | 33605.6 |
| Grounding rod 20mmX3m | material | 126.61 |
| Grounding rod with Pit 20mmX3m | material | 250.66 |
| Earthing Bar | material | 659.26 |
| Cu earth strip 25X4 mm | material | 134.28 |
| 1.5m Air terminal | material | 987.29 |
| 4mm2 Cu./FRLSZH Cable | material | 7.67 |
| 6mm2 Cu./FRLSZH Cable | material | 8.31 |
| 10mm2 Cu./FRLSZH Cable | material | 10.87 |
| 16mm2 Cu./FRLSZH Cable | material | 10.87 |
| 95mm2 Cu./FRLSZH Cable | material | 56.91 |
| 120mm2 Cu./FRLSZH Cable | material | 65.22 |
| 30KVA, 400V, 3PH, 60Hz UPS | material | 68942.8 |
| Fire Alarm Control panel with fire alarm zoning with Mimic panel with fire alarm zoning | material | 5368.07 |
| Supply, install to site and installation of the addressable manual call point with operation safety glass breaking and pushbutton | material | 163.06 |
| Supply, install to site and installation of the Aspirating Smoke Detector complete with accessories and pipes | material | 164.97 |
| Supply, install to site and installation of the photoelectric smoke detector with base | material | 196.31 |
| Supply, install to site and installation of the heat detector with base | material | 201.42 |
| Supply, install to site and installation of multi criteria sensors with base | material | 237.87 |
| Supply, install to site and installation of Hydrogen detector | material | 427.78 |
| Supply, install to site and installation of Duct detector | material | 177.76 |
| Sounder With Beacon | material | 521.78 |
| Remote LED Indicator | material | 275.6 |
| Addressable Control module for Sounders | material | 220.6 |
| Addressable relay module for interface | material | 207.18 |
| Addressable monitor module for interface | material | 234.03 |
| Supply, install to site and installation Fire loop cable | material | 12.15 |
| Transmission Communication cable - Fiber Optics | material | 29.41 |
| Transmission Communication cable - Ethernet Cable | material | 6.39 |
| Supply, install to site and installation of power cable | material | 8.95 |
| Fire Fighter’s Telephone Centre | material | 3424.19 |
| Fireman’s Telephone Jack | material | 4107.74 |
| Voice Command Center | material | 29.41 |
| DACT (Auto - Dailer) for 24x7 Civil Defence | material | 6.39 |
| Single Channel Interface Module | material | 686.11 |
| Supply, install to site and installation of power supply system for fire alarm control panel | material | 3424.19 |
| Supply, install, connection, testing and commssionigs horizontal bladder type pressure tank with capacity 1500 liter according to manufacturer's detail and specification - PS-PT-1 | material | 253729 |
| Supply, install, connection, testing and commssionigs horizontal bladder type pressure tank with capacity 300 liter according to manufacturer's detail and specification - PS-PT-2 | material | 95148.2 |
| Chemical DosingTank (CDT) 6000 liters capacity polytheylene tank With pump assembly. | material | 380593 |
| Pump Set for Domestic Supply (BP01 / BP02) | material | 91183.7 |
| Pump Set for Irrigation Supply (IRR01 / IRR02) | material | 154893 |
| Pump Set for Drainage System | material | 163457 |
| Pump Set for SW Force Main (1W+1S) | material | 53854 |
| Pump Set for FF Supply (FP01.FP02) | material | 202904 |
| Supply and installation of western water closet, flush tank type, heavy duty, one piece SASO certified, approval of client, dimesion not less than 40 cm width, 68 cm length including all other accessories as per drawings and specification | material | 1189.35 |
| Supply and installation of urinal, heavy duty, one piece SASO certified, approval of client, including all other accessories as per drawings and specification | material | 1189.35 |
| Supply and installation of Bib tap with Perenial Hose (BPH) with stainless steel flexible hose and cast brass chromeplated hand including all other accessories to complete as per drawing and specification. | material | 158.58 |
| Supply, installation, testing and commissioning of Lavatory / wash basin with counter for toilets, built in soap dispenser, mixer, single lever arm including all accessories as per drawings and specification and to the approval of the client | material | 1189.35 |
| Provide and install paper towel dispenser, surface mounted, satin finish stainless steel as per approved sample including accessories. | material | 198.23 |
| Provide and install mirror as per approved sample including frames, backing and all accessories to complete. | material | 634.32 |
| Provide and install towel ring, surface mounted, satin finish stainless steel as per approved sample including accessories. | material | 95.27 |
| Hose Bib | material | 158.58 |
| Valve Chamber | material | 1189.35 |
| Retarding Chamber | material | 792.9 |
| Inspection Chamber | material | 2378.71 |
| Neutralization pit 1000x1000mm | material | 2378.71 |
| 25mm diameter | material | 15.99 |
| 32mm diameter | material | 24.3 |
| 40mm diameter | material | 31.97 |
| 50mm diameter | material | 39.64 |
| 75mm diameter | material | 55.63 |
| 80mm diameter | material | 63.94 |
| 100mm diameter | material | 79.29 |
| 110mm diameter | material | 95.27 |
| 15mm diameter | material | 19.83 |
| 20mm diameter | material | 28.13 |
| 25mm diameter | material | 35.81 |
| 32mm diameter | material | 44.12 |
| 40mm diameter | material | 47.96 |
| 50mm diameter | material | 63.94 |
| 100mm diameter | material | 4797.06 |
| 150mm diameter | material | 6303.57 |
| 200mm diameter | material | 7120.77 |
| 250mm diameter | material | 8602.99 |
| 13mm diameter | material | 39.64 |
| 20mm diameter | material | 55.63 |
| Gully Trap | material | 515.38 |
| Floor drain 75mm | material | 673.97 |
| Floor cleanout 110mm | material | 673.97 |
| Roof drain | material | 634.32 |
| GRP water tanks capacity of each 1000 liter complete with all fittings, all valves and concrete pad | material | 5550.31 |
| Water Heater 30ltr | material | 543.52 |
| Neem Tree, T01 Tree | material | 76.92 |
| Cassia Glauca Tree, T02 Tree | material | 76.92 |
| Ponciana Tree, T03 Tree | material | 76.92 |
| Dodonaea Viscosa, S01 Shrubs 400-500mm, 4plant/m2 | material | 5.34 |
| Vitex Angus-Cactus, S02 Shrubs 400-500mm, 5plant/m2 | material | 5.34 |
| Pennisetum Rubrum , S03 Shrubs 400-500mm, 5plant/m2 | material | 5.34 |
| sesuvium portulacastrum green carpet, GC01 Ground Cover | material | 5.34 |
| Catharanthus Roseus 150-200mm, GC02 Ground Cover | material | 5.34 |
| Seating Bench | material | 177.51 |
| Riyadh Stone Boulders 450mm thick | material | 29.59 |
| Gravel Mulch 150mm Beige | material | 3.63 |
| Gravel Mulch 150mm White | material | 2.39 |
| Gravel Ponds Bed - MARL MIX 500-600mm | material | 3.63 |
| Trash/ Recycle Bins | material | 88.76 |

## Schedule

| ID | WBS | Activity | Type | Duration | Start | Finish | Predecessors | Complete | Planned start | Planned finish | Total float | Free float |
| --- | --- | --- | --- | --- | --- | --- | --- | --- | --- | --- | --- | --- |
|  | MS | **Key Milestones** |  |  | 2026-01-06 | 2027-07-27 |  |  |  |  |  |  |
|  | CM | **Contractual Milestones** |  |  | 2026-01-06 | 2027-07-27 |  |  |  |  |  |  |
| MS-CS-PS |  | Project Commencement Date ( Site Handover ) | milestone | 0d | 2026-01-06 A | 2026-01-06 A |  | 100% |  |  |  |  |
| MS-CF-EBL |  | Completion of Execution Plan and Baseline Schedule | milestone | 0d | 2026-02-05 A | 2026-02-05 A | PRE-CON-MDC-20 SS, PRE-CON-MDC-20 FF, PRE-CON-MDC-10 FF | 100% | 2026-06-23 | 2026-06-23 |  |  |
| MS-CF-MOB |  | Completion of Mobilization Works | milestone | 0d | 2026-03-07 A | 2026-03-07 A | MOB-30 SS, MOB-30 FF, MOB-80 FF, MOB-40 FF, MOB-50 FF, MOB-60 FF, MOB-10 FF, MOB-70 FF, PRE-CON-MDC-10 FF, PRE-CON-MDC-20 FF, PRE-CON-MDC-30 FF, PRE-CON-MDC-40 FF, PRE-CON-MDC-50 FF, PRE-CON-MDC-60 FF, PRE-CON-MDC-70 FF, PRE-CON-MDC-80 FF | 100% | 2026-06-23 | 2026-06-23 |  |  |
| MS-CF-ENG |  | Completion of Submitting and Approval of Shopdrawing and Materials | milestone | 0d | 2026-12-06 | 2026-12-06 | PRE-CON-MDC-30 SS, PRE-CON-MDC-30 FF, PRE-CON-MDC-40 FF, PRE-CON-MDC-50 FF, PRE-CON-MDC-60 FF, PRE-CON-MDC-70 FF, PRE-CON-MDC-80 FF, ENG-SH-RD-A-100 FF, ENG-SH-RD-A-110 FF, ENG-SH-HS-A-110 FF, ENG-SH-MRK-A-110 FF, ENG-SH-TSB-A-100 FF, ENG-SH-SD-ML-A-110 FF, ENG-SH-SD-CB-A-110 FF, ENG-SH-DPO-A-120 FF, ENG-SH-SW-ML-A-110 FF, ENG-SH-TSE-ML-A-120 FF, ENG-SH-PW-ML-A-110 FF, ENG-SH-PW-FH-A-110 FF, ENG-SH-IR-ML-A-110 FF, ENG-SH-MV-A-110 FF, ENG-SH-LV-A-120 FF, ENG-SH-SL-A-110 FF, ENG-SH-CTV-A-110 FF, ENG-SH-MSN-A-120 FF, ENG-SH-TE-A-110 FF, ENG-SH-LS-A-170 FF, ENG-SH-ST-A-180 FF, ENG-SH-ST-A-190 FF, ENG-SH-SPS-A-160 FF, ENG-SH-GR-A-190 FF, ENG-SH-GR-A-200 FF, ENG-MS-SD-ML-A-110 FF, ENG-MS-SD-CB-A-110 FF, ENG-MS-DPO-A-130 FF, ENG-MS-SW-ML-A-110 FF, ENG-MS-TSE-ML-A-120 FF, ENG-MS-PW-ML-A-110 FF, ENG-MS-IR-ML-A-110 FF, ENG-MS-MV-A-110 FF, ENG-MS-MV-A-120 FF, ENG-MS-SL-A-110 FF, ENG-MS-CTV-A-110 FF, ENG-MS-TE-A-110 FF, ENG-MS-RD-A-10 FF, ENG-MS-RD-A-20 FF, ENG-MS-RD-A-30 FF, ENG-MS-RD-A-40 FF, ENG-MS-HS-A-10 FF, ENG-MS-MRK-A-10 FF, ENG-MS-TSB-A-10 FF, ENG-MS-LS-A-180 FF, ENG-MS-ST-A-190 FF, ENG-MS-ST-A-200 FF, ENG-MS-SPS-A-170 FF, ENG-MS-GR-A-210 FF, ENG-MS-GR-A-220 FF, ENG-MT-SD-ML-A-100 FF, ENG-MT-SD-ML-A-110 FF, ENG-MT-SD-CB-A-100 FF, ENG-MT-SD-CB-A-110 FF, ENG-MT-DPO-CV-A-110 FF, ENG-MT-SD-TF-A-100 FF, ENG-MT-SD-TF-A-110 FF, ENG-MT-SW-ML-A-100 FF, ENG-MT-SW-ML-A-110 FF, ENG-MT-SW-TF-A-100 FF, ENG-MT-IR-ML-A-120 FF, ENG-MT-PW-ML-A-100 FF, ENG-MT-PW-ML-A-110 FF, ENG-MT-PW-FH-A-100 FF, ENG-MT-PW-TF-A-100 FF, ENG-MT-IR-ML-A-100 FF, ENG-MT-IR-ML-A-110 FF, ENG-MT-MV-ML-A-100 FF, PRO-LV-ML-A-100 FF, PRO-LV-HC-A-100 FF, PRO-LV-DP-A-100 FF, PRO-LV-DP-A-110 FF, PRO-LV-TT-A-100 FF, ENG-MT-SL-ML-A-100 FF, ENG-MT-SL-A-100 FF, ENG-MT-SL-A-110 FF, ENG-MT-SL-A-120 FF, ENG-MT-SL-DB-A-100 FF, ENG-MT-SL-TF-A-100 FF, ENG-MT-SL-TF-A-110 FF, ENG-MT-SL-ES-A-100 FF, ENG-MT-TE-A-100 FF, ENG-MT-TE-A-110 FF, ENG-MT-CTV-A-100 FF, ENG-MT-RD-A-100 FF, ENG-MT-RD-A-110 FF, ENG-MT-RD-A-120 FF, ENG-MT-RD-A-130 FF, ENG-MT-RD-A-160 FF, ENG-MT-RD-A-170 FF, ENG-MT-RD-A-140 FF, ENG-MT-RD-A-150 FF, ENG-MT-TS-A-100 FF, ENG-MT-TS-A-110 FF, ENG-MT-IR-ML-A-140 FF, ENG-MT-IR-ML-A-150 FF, ENG-MT-SLS-CV-A-110 FF, ENG-MT-TSE-CV-A-140 FF, ENG-MT-TSE-CV-A-150 FF, ENG-MT-PS-CV-A-150 FF, ENG-MT-GR-CV-A-130 FF, ENG-MT-FE-CV-A-120 FF, ENG-MT-SPS-MC-A-110 FF, ENG-MT-TSE-MC-A-120 FF |  |  |  | -115d | 0d |
| MS-CF-SW |  | Completion of Construction Works for Sewage Network | milestone | 0d | 2027-03-22 | 2027-03-22 | PRO-R25-SW-DL-120 FF, PRO-SW-1DL-120 FF, CO-SW-MH-250 FF, PRO-RD-1DL-130 FF, PRO-R25-RD-DL-100 FF, PRO-RD-1DL-100 FF, MS-MM-140 FF, MS-MM-130 FF, ENG-SH-RD-A-100 FF, ENG-SH-RD-A-110 FF, ENG-MS-RD-A-30 FF, ENG-MS-RD-A-20 FF, ENG-MS-RD-A-10 FF, ENG-MS-RD-A-40 FF, CO-SW-ML-160 FF, CO-EW-210_R FF, PRO-SD-1DL-140 FF, PRO-R25-SD-DL-140 FF, CO-SW-MH-300 FF, PRO-R25-RD-DL-110 FF, PRO-RD-1DL-110 FF, CO-EW-220 FF, CO-SW-ML-190 FF, PRO-SW-1DL-110 FF, PRO-R25-SW-DL-110 FF, ENG-MT-SW-ML-A-100 FF, ENG-SH-SW-ML-A-110 FF, CO-EW-200 FF, ENG-MS-SW-ML-A-110 FF, PRO-R25-SD-DL-110 FF, PRO-R25-SD-DL-130 FF, PRO-SD-1DL-130 FF, PRO-SD-1DL-120 FF, ENG-MT-SD-CB-A-110 FF, ENG-SH-SD-CB-A-110 FF, ENG-MS-SD-CB-A-110 FF, PRO-SW-1DL-100 FF, PRO-R25-SW-DL-100 FF, ENG-MT-SW-ML-A-110 FF, CO-SW-MH-240 FF, CO-SW-MH-230 FF, CO-SW-MH-220 FF, CO-EW-240 FF, CO-SW-MH-210 FF, CO-SW-ML-150 FF, CO-SW-ML-140 FF, CO-EW-230 FF, PRO-SD-1DL-100 FF, PRO-R25-SD-DL-100 FF, ENG-MT-SD-ML-A-100 FF, ENG-MS-SD-ML-A-110 FF, ENG-MT-SD-ML-A-110 FF, ENG-SH-SD-ML-A-110 FF, PRO-LV-DP-1DL-100 FF, ENG-SH-MSN-A-120 FF, ENG-SH-CTV-A-110 FF, ENG-MS-CTV-A-110 FF, ENG-MT-CTV-A-100 FF, PRO-R25-SW-DL-120 SS |  |  |  | -101d | 0d |
| MS-CF-MV |  | Completion of Construction Works for Medium Voltage Network | milestone | 0d | 2027-05-01 | 2027-05-01 | CO-MV-TF-230 SS, CO-MV-TF-230 FF, CO-MV-TF-240 FF, CO-MV-TF-250 FF, CO-MV-TF-260 FF |  |  |  | -86d | 0d |
| MS-CF-IR |  | Completion of Construction Works for Irrigation Network | milestone | 0d | 2027-05-11 | 2027-05-11 | CO-PW-TF-110 FF, CO-PW-TF-130 FF, ENG-MT-IR-ML-A-110 FF, PRO-IR-1DL-110 FF, PRO-R25-IR-DL-110 FF, PRO-IR-1DL-100 FF, CO-PW-ML-110 FF, PRO-R25-IR-DL-100 FF, ENG-SH-IR-ML-A-110 FF, ENG-MS-IR-ML-A-110 FF, ENG-MT-IR-ML-A-100 FF, CO-PW-ML-100 FF, CO-EW-200 FF, MS-MM-130 FF, MS-MM-140 FF, CO-IR-ML-190 FF, CO-IR-ML-170 FF, CO-IR-ML-160 FF, CO-EW-240 FF, CO-IR-ML-150 FF, CO-SW-MH-250 FF, CO-SW-MH-240 FF, CO-SW-MH-230 FF, PRO-SW-1DL-110 FF, PRO-R25-SW-DL-110 FF, CO-SW-MH-220 FF, ENG-MT-SW-ML-A-100 FF, ENG-SH-SW-ML-A-110 FF, ENG-MS-SW-ML-A-110 FF, CO-SD-MH-380 FF, CO-SD-ML-250 FF, CO-SW-MH-210 FF, CO-SD-CB-200 FF, PRO-R25-SD-DL-110 FF, PRO-R25-SD-DL-130 FF, PRO-SD-1DL-130 FF, PRO-SD-1DL-120 FF, CO-SD-CB-190 FF, ENG-MT-SD-CB-A-110 FF, ENG-SH-SD-CB-A-110 FF, ENG-MS-SD-CB-A-110 FF, CO-SD-CB-180 FF, CO-SW-ML-160 FF, PRO-SW-1DL-100 FF, PRO-R25-SW-DL-100 FF, CO-SW-ML-150 FF, ENG-MT-SW-ML-A-110 FF, CO-SW-ML-140 FF, CO-IR-TF-170 FF, CO-IR-TF-180, CO-IR-TF-210 FF |  |  |  | -74d | 36d |
| MS-CF-PW |  | Completion of Construction Works for Potable Water Network | milestone | 0d | 2027-05-11 | 2027-05-11 | CO-PW-TF-120 SS, CO-PW-TF-120 FF, CO-PW-TF-140 FF, CO-PW-TF-170 FF, CO-PW-TF-200 FF |  |  |  | -74d | 33d |
| MS-CF-TE |  | Completion of Construction Works for Telecom and Light Current Networks | milestone | 0d | 2027-05-25 | 2027-05-25 | CO-TE-CTV-240 FF, CO-TE-CTV-TF-140 SS, CO-TE-CTV-TF-140 FF, CO-TE-CTV-TF-180 FF, CO-TE-CTV-TF-220 FF, CO-TE-CTV-TF-260 FF, CO-TE-CTV-TF-310 FF, CO-TE-CTV-TF-320 FF, CO-TE-CTV-TF-330 FF, CO-TE-CTV-TF-340 FF, CO-TE-CTV-TF-350 FF, CO-TE-CTV-TF-360 FF |  |  |  | -81d | 29d |
| MS-MO-20 |  | Completion of Storm Drainage Ponds | milestone | 0d | 2027-05-25 | 2027-05-25 | CO-SD-PO-110-P2 SS, CO-SD-PO-110-P2 FF, CO-SD-PO-110-P1 FF |  |  |  | -107d | 0d |
| MS-CF-LO |  | Completion of Construction Works for Low Voltage Network | milestone | 0d | 2027-05-26 | 2027-05-26 | PRO-LV-DP-1DL-100 FF, PRO-LV-DP-DL-100 FF, CON-LV-DP-130 FF, PRO-LV-TT-1DL-100 FF, PRO-LV-TT-DL-100 FF, CO-MV-TF-230 FF, PRO-LV-DP-1DL-110 FF, PRO-LV-DP-DL-120 FF, CON-LV-DP-190 FF, CON-LV-DP-110 FF, CO-MV-TF-250 FF, CON-LV-ML-120 SS, CON-LV-ML-120 FF, CON-LV-HC-120 FF, CON-LV-DP-120 FF, CON-LV-TT-110 FF, CON-LV-TT-100 FF, CON-LV-ES-100 FF, CON-LV-ML-150 FF, CON-LV-HC-150 FF, CON-LV-TT-120 FF, CON-LV-ML-180 FF, CON-LV-HC-180 FF, CON-LV-DP-180 FF, CON-LV-TT-150 FF, CON-LV-TT-140 FF, CON-LV-ES-120 FF, CON-LV-ML-210 FF, CON-LV-HC-210 FF, CON-LV-TT-160 FF, CON-LV-ML-240 FF, CON-LV-HC-240 FF, CON-LV-DP-240 FF, CON-LV-TT-190 FF, CON-LV-TT-180 FF, CON-LV-ES-140 FF |  |  |  | -82d | 28d |
| MS-CF-RD |  | Completion of Construction Works for Road Works | milestone | 0d | 2027-05-27 | 2027-05-27 | CO-RD-F-TS-120 FF, CO-RD-F-TS-130 FF, CO-RD-F-TS-150 FF, CO-RD-F-TS-170 FF, CO-RD-F-TS-180 FF, CO-RD-F-TS-190, CO-RD-F-TS-200 FF |  |  |  | -84d | 27d |
| MS-CF-SD |  | Completion of Construction Works for Storm Drainage Network | milestone | 0d | 2027-05-31 | 2027-05-31 | CO-SD-ML-TF-130 FF, CO-SD-MH-220 FF, PRO-SD-1DL-100 FF, CO-SD-MH-200 FF, PRO-R25-SD-DL-100 FF, CO-SD-MH-190 FF, ENG-MT-SD-ML-A-100 FF, CO-EW-230 FF, ENG-MS-SD-ML-A-110 FF, ENG-MT-SD-ML-A-110 FF, ENG-SH-SD-ML-A-110 FF, MS-MM-130 FF, MS-MM-140 FF, CO-SD-MH-180 FF, PRO-SD-1DL-140 FF, PRO-R25-SD-DL-140 FF, CO-SD-MH-260 FF, PRO-R25-RD-DL-170 FF, PRO-RD-1DL-130 FF, PRO-R25-RD-DL-100 FF, PRO-RD-1DL-100 FF, ENG-SH-RD-A-100 FF, ENG-SH-RD-A-110 FF, ENG-MS-RD-A-30 FF, ENG-MS-RD-A-20 FF, ENG-MS-RD-A-10 FF, ENG-MS-RD-A-40 FF, CO-TE-MH-190 FF, CO-TE-DW-160 FF, CO-SL-CL-300 FF, CO-SL-LP-380 FF, CON-LV-HC-150 FF, CON-LV-ML-150 FF, CO-MV-ML-300 FF, CO-IR-ML-180 FF, CO-PW-FH-190 FF, CO-PW-VC-250 FF, CO-PW-ML-160 FF, CO-TSE-ML-230 FF, CO-SW-ML-160 FF, CO-SW-MH-250 FF, CO-SD-CB-200 FF, CO-SD-ML-160 FF, CO-EW-210_R FF, CO-SL-LP-520 FF, PRO-R25-RD-DL-110 FF, PRO-RD-1DL-110 FF, CO-IR-TF-210 FF, CO-TE-CTV-210 FF, CO-SD-ML-220 FF, CO-PW-ML-220 FF, CO-PW-VC-310 FF, CO-TSE-ML-330 FF, CO-MV-ML-360 FF, CO-SL-LP-480 FF, CO-SL-CL-360 FF, CON-LV-HC-210 FF, CON-LV-ML-210 FF, CO-TE-DW-240 FF, CO-PW-FH-250 FF, CO-TE-MH-250 FF, CO-RD-PB-140 FF, CO-IR-ML-380 FF, CO-SD-ML-130 FF, PRO-R25-SD-DL-110 FF, PRO-R25-SD-DL-130 FF, PRO-SD-1DL-130 FF, PRO-SD-1DL-120 FF, ENG-MT-SD-CB-A-110 FF, ENG-SH-SD-CB-A-110 FF, ENG-MS-SD-CB-A-110 FF, ENG-MT-SW-ML-A-100 FF, ENG-SH-SW-ML-A-110 FF, ENG-MS-SW-ML-A-110 FF, PRO-SW-1DL-100 FF, ENG-MT-SW-ML-A-110 FF, PRO-LV-DP-1DL-100 FF, PRO-LV-DP-DL-100 FF, CON-LV-DP-120 FF, CON-LV-DP-190 FF, CON-LV-DP-110 FF, ENG-SH-MSN-A-120 FF, ENG-SH-CTV-A-110 FF, ENG-MS-CTV-A-110 FF, ENG-MT-CTV-A-100 FF, PRO-CTV-1DL-100 FF, CO-TE-MH-160 FF, CO-TE-CTV-110 FF, CO-SD-MH-TF-210 SS, CO-SD-MH-TF-210 FF, CO-SD-MH-TF-230 FF |  |  |  | -86d | 24d |
| MS-CF-SL |  | Completion of Construction Works for Street Lighting Network | milestone | 0d | 2027-05-31 | 2027-05-31 | CO-SL-LP-370 FF, CO-SL-ES-250 FF, CO-SL-LP-380 FF, CO-SL-CL-300 FF, ENG-MT-SL-DB-A-100 FF, CO-EW-210_R FF, MS-MM-130 FF, MS-MM-140 FF, PRO-R25-SL-DL-170 FF, CO-SL-DB-340 FF, CO-SL-LP-420 FF, CO-SL-LP-580 FF, CO-SL-ES-330 FF, PRO-R25-SL-DL-160 FF, CO-SL-LP-570 FF, CO-SL-CL-420 FF, CO-EW-200 FF, CO-SL-LP-530 FF, CO-SL-ES-310, CO-SL-LP-520 FF, CO-SL-CL-390 FF, CO-EW-240 FF, CO-SL-LP-470 FF, CO-SL-ES-290 FF, CO-SL-LP-480 FF, CO-SL-CL-360 FF, CO-EW-230 FF |  |  |  | -86d | 24d |
| MS-CF-TSE |  | Completion of Construction Works for Treated Sewage Effluent Network | milestone | 0d | 2027-06-03 | 2027-06-03 | CO-TSE-TF-170 SS, CO-TSE-TF-170 FF, CO-TSE-TF-180 FF, CO-TSE-TF-190 FF, CO-TSE-TF-200 FF, CO-TSE-TF-210 FF |  |  |  | -70d | 46d |
| MS-MO-10 |  | Completion of Sewage Pump Station | milestone | 0d | 2027-06-24 | 2027-06-24 | PRO-SPS-LL-MSI-10 FF, MS-CF-PW FF, CO-UB-PS-390 FF, CO-UB-LS-280 SS, CO-UB-LS-280 FF, CO-UB-LS-370 FF, CO-UB-LS-390 FF |  |  |  | -88d | 28d |
| MS-MO-50 |  | Completion of Water Pump Station | milestone | 0d | 2027-06-24 | 2027-06-24 | PRO-LS-LL-MSI-20 FF, CO-UB-PS-280 FF, CO-UB-PS-390 SS, CO-UB-PS-390 FF, CO-UB-PS-320 FF, CO-UB-PS-250 FF, CO-UB-PS-160 FF |  |  |  | -107d | 3d |
| MS-MO-60 |  | Completion of Irrigation and Potable Tank | milestone | 0d | 2027-06-30 | 2027-06-30 | CO-UB-PWT-170 FF, CO-UB-PS-320 FF, CO-UB-IRT-210 FF, PRO-TSE-LL-MSI-30 FF, CO-UB-PWT-110 SS, CO-UB-PWT-110 FF, CO-UB-PWT-150 FF, CO-UB-IRT-150 FF, CO-UB-IRT-190 FF |  |  |  | -93d | 23d |
| MS-MO-40 |  | Completion of Control Room | milestone | 0d | 2027-07-19 | 2027-07-19 | T/C-CTV10 SS, T/C-CTV10 FF |  |  |  | -109d | 7d |
| MS-CF-PF |  | Project Completion Date | milestone | 0d | 2027-07-27 | 2027-07-27 | CO-SD-PO-110-P2 SS, CO-SD-PO-110-P2 FF, MS-CF-PW FF, MS-CF-IR FF, MS-CF-SW FF, MS-CF-SD FF, MS-CF-TSE FF, MS-CF-MV FF, MS-CF-SL FF, MS-CF-TE FF, MS-CF-RD FF, MS-MO-20 FF, MS-MO-60 FF, MS-MO-40 FF, MS-MO-50 FF, MS-MO-10 FF, MS-CF-EBL FF, MS-CF-ENG FF, CO-LS-SF-170 FF, T/C-CTV FF, HO-130 FF, HO-200 FF, HO-100 FF, HO-180 FF, HO-190 FF, HO-150 FF, HO-160 FF, HO-170 FF, HO-210 FF, HO-140 FF, HO-120 FF, HO-220 FF, HO-230 FF, HO-110 FF, HO-250 FF, HO-260 FF, HO-270 FF, HO-240 FF, HO-280 FF, MS-CF-LO FF, T/C-CTV10 FF, T/C-CTV20 FF |  |  |  | -116d | 0d |
|  | CM1 | **Control Milestones** |  |  | 2026-01-06 | 2026-11-09 |  |  |  |  |  |  |
|  | 2 | **The Employer** |  |  | 2026-02-03 | 2026-11-09 |  |  |  |  |  |  |
| MS-MM-100 |  | Right of Access and Possession of theï¿½Site | milestone | 0d | 2026-02-03 A | 2026-02-03 A | MS-CS-PS FF, MS-CS-PS SS | 100% |  |  |  |  |
| MS-MM-130 |  | Receipt the Site Benchmark Coordinates (Original Point) From The Employer | milestone | 0d | 2026-02-03 A | 2026-02-03 A | MS-MM-100 SS, MS-MM-100 FF | 100% |  |  |  |  |
| MS-MM-140 |  | Receipt the Site Levels Details From The Employer | milestone | 0d | 2026-02-03 A | 2026-02-03 A | MS-MM-130 SS, MS-MM-130 FF | 100% |  |  |  |  |
| MS-MM-150 |  | Receipt of Approved Concept Master Plan for the Project From the Employer | milestone | 0d | 2026-02-03 A | 2026-02-03 A | MS-MM-100 SS, MS-MM-100 FF | 100% |  |  |  |  |
| MS-MM-160 |  | Receipt of Master Plan Approval Letter for the Project From the Employer | milestone | 0d | 2026-02-03 A | 2026-02-03 A | MS-MM-100 SS, MS-MM-100 FF | 100% |  |  |  |  |
| MS-MM-120 |  | Receipt of Advance Payment for the Project From The Employer | milestone | 0d | 2026-11-09 | 2026-11-09 | MS-MM-100 SS, MS-MM-100 FF |  |  |  | -60d | 0d |

| ID | WBS | Activity | Type | Duration | Start | Finish | Predecessors | Complete | Planned start | Planned finish | 01- Network |
| --- | --- | --- | --- | --- | --- | --- | --- | --- | --- | --- | --- |
|  | 1 | **NOC's** |  |  | 2026-01-06 | 2026-01-06 |  |  |  |  |  |
|  | INF | **Infrastructure Networks** |  |  | 2026-01-06 | 2026-01-06 |  |  |  |  |  |
| MS-CS-IR |  | Receipt of Approval NOC From Relevant Authorities For Irrigation Network | milestone | 0d | 2026-01-06 A | 2026-01-06 A | MS-CS-PS SS | 100% |  |  |  |
| MS-CS-LV |  | Receipt of Approval NOC From Relevant Authorities For Low Voltage Network | milestone | 0d | 2026-01-06 A | 2026-01-06 A | MS-CS-PS SS | 100% |  |  |  |
| MS-CS-MV |  | Receipt of Approval NOC From Relevant Authorities For Medium Voltage Network | milestone | 0d | 2026-01-06 A | 2026-01-06 A | MS-CS-PS SS | 100% |  |  |  |
| MS-CS-PW |  | Receipt of Approval NOC From Relevant Authorities For Potable Water Network | milestone | 0d | 2026-01-06 A | 2026-01-06 A | MS-CS-PS SS | 100% |  |  |  |
| MS-CS-RD |  | Receipt of Approval NOC From Relevant Authorities For Roads Network | milestone | 0d | 2026-01-06 A | 2026-01-06 A | MS-CS-PS SS | 100% |  |  |  |
| MS-CS-SD |  | Receipt of Approval NOC From Relevant Authorities For Storm Network | milestone | 0d | 2026-01-06 A | 2026-01-06 A | MS-CS-PS SS | 100% |  |  |  |
| MS-CS-SL |  | Receipt of Approval NOC From Relevant Authorities For Street Lighting Network | milestone | 0d | 2026-01-06 A | 2026-01-06 A | MS-CS-PS SS | 100% |  |  |  |
| MS-CS-SW |  | Receipt of Approval NOC From Relevant Authorities For Sewage Network | milestone | 0d | 2026-01-06 A | 2026-01-06 A | MS-CS-PS SS | 100% |  |  |  |
| MS-CS-TE |  | Receipt of Approval NOC From Relevant Authorities For Telecom and Light Current Network | milestone | 0d | 2026-01-06 A | 2026-01-06 A | MS-CS-PS SS | 100% |  |  |  |
| MS-CS-TSE |  | Receipt of Approval NOC From Relevant Authorities For Treated Sewage Effluent Network | milestone | 0d | 2026-01-06 A | 2026-01-06 A | MS-CS-PS SS | 100% |  |  |  |
|  | SU | **Superstructure Works** |  |  | 2026-01-06 | 2026-01-06 |  |  |  |  |  |
| MS-CS-IR10 |  | Receipt of Approval NOC From Relevant Authorities For Sewage Pump Station | milestone | 0d | 2026-01-06 A | 2026-01-06 A | MS-CS-PS SS | 100% |  |  |  |
| MS-CS-LV10 |  | Receipt of Approval NOC From Relevant Authorities For Boundary Fence | milestone | 0d | 2026-01-06 A | 2026-01-06 A | MS-CS-PS SS | 100% |  |  |  |
| MS-CS-MV10 |  | Receipt of Approval NOC From Relevant Authorities For Water Pump Station | milestone | 0d | 2026-01-06 A | 2026-01-06 A | MS-CS-PS SS | 100% |  |  |  |
| MS-CS-SL10 |  | Receipt of Approval NOC From Relevant Authorities For Storm Drainage Ponds | milestone | 0d | 2026-01-06 A | 2026-01-06 A | MS-CS-PS SS | 100% |  |  |  |
| MS-CS-TE10 |  | Receipt of Approval NOC From Relevant Authorities For Storage Tank (TSE) | milestone | 0d | 2026-01-06 A | 2026-01-06 A | MS-CS-PS SS | 100% |  |  |  |
| MS-CS-TE20 |  | Receipt of Approval NOC From Relevant Authorities For Control Room | milestone | 0d | 2026-01-06 A | 2026-01-06 A | MS-CS-PS SS | 100% |  |  |  |
| MS-CS-TSE10 |  | Receipt of Approval NOC From Relevant Authorities For Gaurd Room | milestone | 0d | 2026-01-06 A | 2026-01-06 A | MS-CS-PS SS | 100% |  |  |  |
|  | MM | **Intermediate Milestones** |  |  |  |  |  |  |  |  |  |
|  | MOB | **Preliminaries and Mobilization Works** |  |  | 2026-01-06 | 2026-04-11 |  |  |  |  |  |
|  | MOB | **Mobilization Works** |  |  | 2026-01-06 | 2026-04-11 |  |  |  |  |  |
| MOB-10 |  | Clear and Grub for Offices and Access Roads |  | 14d | 2026-01-06 A | 2026-01-20 A | MS-CS-PS FF, MS-CS-PS SS | 100% | 2026-01-06 | 2026-01-21 | MA |
| MOB-20 |  | Project Site Layout Plan Approval |  | 7d | 2026-01-21 A | 2026-01-27 A | MS-CS-PS SS, MOB-10 | 100% | 2026-01-21 | 2026-01-28 |  |
| MOB-80 |  | Construction Site Access Roads |  | 17d | 2026-01-28 A | 2026-02-15 A | MOB-20, MS-CS-PS SS | 100% | 2026-01-28 | 2026-02-16 |  |
| MOB-50 |  | Mobilization of Major Manpower |  | 6d | 2026-02-12 A | 2026-02-26 A | MOB-40 SS, MS-CS-PS SS, MOB-30 | 100% | 2026-02-12 | 2026-02-18 |  |
| MOB-60 |  | Mobilization of Major Equipments |  | 6d | 2026-02-12 A | 2026-03-07 A | MS-CS-PS SS, MOB-30 | 100% | 2026-02-12 | 2026-02-18 |  |
| MOB-30 |  | Supply & Install of Temporary Offices for the Project |  | 9d | 2026-04-01 A | 2026-04-09 A | MS-CS-PS SS, MOB-20 | 100% | 2026-04-01 | 2026-04-11 |  |
| MOB-40 |  | Construction Project Store |  | 10d | 2026-04-01 A | 2026-04-11 A | MS-CS-PS SS, MOB-20 | 100% | 2026-04-01 | 2026-04-12 |  |
| MOB-70 |  | Installation Project Sign Board |  | 10d | 2026-04-01 A | 2026-04-11 A | MOB-10 SS, MS-CS-PS SS, MOB-20 | 100% | 2026-04-01 | 2026-04-12 |  |

| ID | WBS | Activity | Duration | Start | Finish | Predecessors | Complete | Planned start | Planned finish | 01- Network |
| --- | --- | --- | --- | --- | --- | --- | --- | --- | --- | --- |
|  | 1 | **Project Main Documents From The Contractor** |  | 2026-01-06 | 2026-02-05 |  |  |  |  |  |
| PRE-CON-MDC-10 |  | Submission Project Execution Plan | 28d | 2026-01-06 A | 2026-02-05 A | MS-CS-PS SS | 100% | 2026-01-06 | 2026-02-07 |  |
| PRE-CON-MDC-20 |  | Submission Project Baseline Schedule | 28d | 2026-01-06 A | 2026-02-05 A | MS-CS-PS SS | 100% | 2026-01-06 | 2026-02-07 |  |
| PRE-CON-MDC-30 |  | Submission Project Health & Safety Plan | 28d | 2026-01-06 A | 2026-02-05 A | MS-CS-PS SS | 100% | 2026-01-06 | 2026-02-07 |  |
| PRE-CON-MDC-40 |  | Submission Project Quality Control Plan | 28d | 2026-01-06 A | 2026-02-05 A | MS-CS-PS SS | 100% | 2026-01-06 | 2026-02-07 |  |
| PRE-CON-MDC-50 |  | Submission Project Surveying Report | 28d | 2026-01-06 A | 2026-02-05 A | MS-CS-PS SS | 100% | 2026-01-06 | 2026-02-07 |  |
| PRE-CON-MDC-60 |  | Submission Project Geotechnical Soil Report | 28d | 2026-01-06 A | 2026-02-05 A | MS-CS-PS SS | 100% | 2026-01-06 | 2026-02-07 |  |
| PRE-CON-MDC-70 |  | Submission Project Environmental Plan | 28d | 2026-01-06 A | 2026-02-05 A | MS-CS-PS SS | 100% | 2026-01-06 | 2026-02-07 |  |
| PRE-CON-MDC-80 |  | Submission Project Organization Chart and Communications Plan | 28d | 2026-01-06 A | 2026-02-05 A | MS-CS-PS SS | 100% | 2026-01-06 | 2026-02-07 |  |
|  | ENG | **Engineering Works** |  | 2026-01-06 | 2026-12-06 |  |  |  |  |  |
|  | SD | **Shop Drawings** |  | 2026-01-06 | 2026-02-04 |  |  |  |  |  |
|  | INF | **Infrastructure Networks** |  | 2026-01-06 | 2026-02-04 |  |  |  |  |  |
|  | RD | **Road Works** |  | 2026-01-06 | 2026-02-04 |  |  |  |  |  |
|  | 1 | **General Road Works** |  | 2026-01-06 | 2026-01-28 |  |  |  |  |  |
| ENG-SH-RD-S-100 |  | Submission Shop Drawings for Plan and Profile of Road Works | 5d | 2026-01-06 A | 2026-01-10 A | MS-CS-RD FF, MS-CS-PS SS, MS-MM-100, MS-MM-130, MS-MM-140, MS-MM-150, MS-MM-160, MS-CS-RD SS | 100% | 2026-01-06 | 2026-01-11 | MA |
| ENG-SH-RD-A-100 |  | Approval Shop Drawings for Plan and Profile of Road Works | 7d | 2026-01-11 A | 2026-01-17 A | ENG-SH-RD-S-100 | 100% | 2026-01-11 | 2026-01-18 | MA |
| ENG-SH-RD-S-110 |  | Submission Shop Drawings for Roads Typical Sections and Pavement Details | 5d | 2026-01-18 A | 2026-01-21 A | MS-CS-PS SS, MS-MM-100, MS-MM-130, MS-MM-140, MS-MM-150, MS-MM-160, ENG-SH-RD-A-100, MS-CS-RD SS, MS-CS-IR SS, MS-CS-MV SS, MS-CS-SL SS, MS-CS-TE SS, MS-CS-LV SS, MS-CS-IR10 SS, MS-CS-SL10 SS, MS-CS-TSE10 SS, MS-CS-LV10 SS, MS-CS-TE20 SS | 100% | 2026-01-18 | 2026-01-22 |  |
| ENG-SH-RD-A-110 |  | Approval Shop Drawings for Roads Typical Sections and Pavement Details | 7d | 2026-01-22 A | 2026-01-28 A | ENG-SH-RD-S-110 | 100% | 2026-01-22 | 2026-01-29 |  |
|  | 10 | **Landscape Works** |  | 2026-01-22 | 2026-02-04 |  |  |  |  |  |
| ENG-SH-HS-S-100 |  | Submission Shop Drawings for Landscape Works | 7d | 2026-01-22 A | 2026-01-28 A | MS-CS-PS SS, MS-MM-100, MS-MM-130, MS-MM-140, MS-MM-150, MS-MM-160, MS-CS-RD SS, ENG-SH-RD-S-100, ENG-SH-RD-S-110 | 100% | 2026-01-22 | 2026-01-29 |  |
| ENG-SH-HS-A-110 |  | Approval Shop Drawings for Landscape Works | 7d | 2026-01-29 A | 2026-02-04 A | ENG-SH-HS-S-100 | 100% | 2026-01-29 | 2026-02-05 |  |
|  | 11 | **Traffic Sign Boards and Road Marking** |  | 2026-01-22 | 2026-02-04 |  |  |  |  |  |
| ENG-SH-MRK-S-110 |  | Submission Shop Drawings for Road Markings | 7d | 2026-01-22 A | 2026-01-28 A | MS-CS-PS SS, MS-MM-100, MS-MM-130, MS-MM-140, MS-MM-150, MS-MM-160, MS-CS-RD SS, ENG-SH-RD-S-100, ENG-SH-RD-S-110 | 100% | 2026-01-22 | 2026-01-29 |  |
| ENG-SH-TSB-S-100 |  | Submission Shop Drawings for Traffic Signs Boards | 7d | 2026-01-22 A | 2026-01-28 A | MS-CS-PS SS, MS-MM-100, MS-MM-130, MS-MM-140, MS-MM-150, MS-MM-160, MS-CS-RD SS, ENG-SH-RD-S-100, ENG-SH-RD-S-110 | 100% | 2026-01-22 | 2026-01-29 |  |
| ENG-SH-MRK-A-110 |  | Approval Shop Drawings for Road Markings | 7d | 2026-01-29 A | 2026-02-04 A | ENG-SH-MRK-S-110 | 100% | 2026-01-29 | 2026-02-05 |  |
| ENG-SH-TSB-A-100 |  | Approval Shop Drawings for Traffic Signs Boards | 7d | 2026-01-29 A | 2026-02-04 A | ENG-SH-TSB-S-100 | 100% | 2026-01-29 | 2026-02-05 |  |

| ID | WBS | Activity | Duration | Start | Finish | Predecessors | Complete | Planned start | Planned finish |
| --- | --- | --- | --- | --- | --- | --- | --- | --- | --- |
|  | ST | **Storm Drainage Network** |  | 2026-01-22 | 2026-02-04 |  |  |  |  |
|  | 1 | **Main Line Sections** |  | 2026-01-22 | 2026-02-04 |  |  |  |  |
| ENG-SH-SD-ML-S-100 |  | Submission Shop Drawings for Main Line and Manholes of Storm Drainage Network | 7d | 2026-01-22 A | 2026-01-28 A | MS-CS-PS SS, MS-MM-100, MS-MM-130, MS-MM-140, MS-MM-150, MS-MM-160, MS-CS-SD SS, ENG-SH-RD-S-100, ENG-SH-RD-S-110 | 100% | 2026-01-22 | 2026-01-29 |
| ENG-SH-SD-ML-A-110 |  | Approval Shop Drawings for Main Line and Manholes of Storm Drainage Network | 7d | 2026-01-29 A | 2026-02-04 A | ENG-SH-SD-ML-S-100 | 100% | 2026-01-29 | 2026-02-05 |
|  | 2 | **Catch Basin Sections** |  | 2026-01-22 | 2026-02-04 |  |  |  |  |
| ENG-SH-SD-CB-S-100 |  | Submission Shop Drawings for Secondary Line and Catch Basin of Storm Drainage Network | 7d | 2026-01-22 A | 2026-01-28 A | MS-CS-PS SS, MS-MM-100, MS-MM-130, MS-MM-140, MS-MM-150, MS-MM-160, ENG-SH-RD-S-100, ENG-SH-RD-S-110 | 100% | 2026-01-22 | 2026-01-29 |
| ENG-SH-SD-CB-A-110 |  | Approval Shop Drawings for Secondary Line and Catch Basin of Storm Drainage Network | 7d | 2026-01-29 A | 2026-02-04 A | ENG-SH-SD-CB-S-100 | 100% | 2026-01-29 | 2026-02-05 |
|  | PO | **Storm Drainage Ponds** |  | 2026-01-22 | 2026-01-28 |  |  |  |  |
| ENG-SH-DPO-S-110 |  | Submission Shop Drawings Package for Storm Drainage Ponds | 4d | 2026-01-22 A | 2026-01-25 A | MS-CS-PS SS, MS-MM-100, MS-MM-130, MS-MM-140, MS-MM-150, MS-MM-160, MS-CS-SL10 SS, ENG-SH-RD-S-100, ENG-SH-RD-S-110 | 100% | 2026-01-22 | 2026-01-26 |
| ENG-SH-DPO-A-120 |  | Approval Shop Drawings Package for Storm Drainage Ponds | 4d | 2026-01-26 A | 2026-01-28 A | ENG-SH-DPO-S-110 | 100% | 2026-01-26 | 2026-01-29 |
|  | SW | **Sewage Network** |  | 2026-01-22 | 2026-02-04 |  |  |  |  |
|  | 1 | **Main Line Sections** |  | 2026-01-22 | 2026-02-04 |  |  |  |  |
| ENG-SH-SW-ML-S-100 |  | Submission Shop Drawings for Main Line and Manholes of Sewage Network | 7d | 2026-01-22 A | 2026-01-28 A | MS-CS-SW FF, MS-CS-PS SS, MS-MM-100, MS-MM-130, MS-MM-140, MS-MM-150, MS-MM-160, MS-CS-SW SS, ENG-SH-RD-S-100, ENG-SH-RD-S-110 | 100% | 2026-01-22 | 2026-01-29 |
| ENG-SH-SW-ML-A-110 |  | Approval Shop Drawings for Main Line and Manholes of Sewage Network | 7d | 2026-01-29 A | 2026-02-04 A | ENG-SH-SW-ML-S-100 | 100% | 2026-01-29 | 2026-02-05 |
|  | TSE | **Treated Sewage Effluent Network** |  | 2026-01-22 | 2026-02-04 |  |  |  |  |
| ENG-SH-TSE-ML-S-110 |  | Submission Shop Drawings for Main Line Treated Sewage Effluent Network | 7d | 2026-01-22 A | 2026-01-28 A | MS-CS-PS SS, MS-MM-100, MS-MM-130, MS-MM-140, MS-MM-150, MS-MM-160, MS-CS-TSE SS, ENG-SH-RD-S-100, ENG-SH-RD-S-110 | 100% | 2026-01-22 | 2026-01-29 |
| ENG-SH-TSE-ML-A-120 |  | Approval Shop Drawings for Main Line Treated Sewage Effluent Network | 7d | 2026-01-29 A | 2026-02-04 A | ENG-SH-TSE-ML-S-110 | 100% | 2026-01-29 | 2026-02-05 |
|  | PW | **Potable Water Network** |  | 2026-01-22 | 2026-02-04 |  |  |  |  |
|  | 1 | **Main Line Sections** |  | 2026-01-22 | 2026-02-04 |  |  |  |  |
| ENG-SH-PW-ML-S-100 |  | Submission Shop Drawings for Main Line and Valve Chambers of Potable Water Network | 7d | 2026-01-22 A | 2026-01-28 A | MS-CS-PS SS, MS-MM-100, MS-MM-130, MS-MM-140, MS-MM-150, MS-MM-160, MS-CS-PW SS, ENG-SH-RD-S-100, ENG-SH-RD-S-110 | 100% | 2026-01-22 | 2026-01-29 |
| ENG-SH-PW-ML-A-110 |  | Approval Shop Drawings for Main Line and Valve Chambers of Potable Water Network | 7d | 2026-01-29 A | 2026-02-04 A | ENG-SH-PW-ML-S-100 | 100% | 2026-01-29 | 2026-02-05 |
|  | 2 | **Fire Hydrant** |  | 2026-01-22 | 2026-02-04 |  |  |  |  |
| ENG-SH-PW-FH-S-100 |  | Submission Shop Drawings for Fire Hydrant Network | 7d | 2026-01-22 A | 2026-01-28 A | MS-CS-PS SS, MS-MM-100, MS-MM-130, MS-MM-140, MS-MM-150, MS-MM-160, MS-CS-PW SS, ENG-SH-RD-S-100, ENG-SH-RD-S-110 | 100% | 2026-01-22 | 2026-01-29 |
| ENG-SH-PW-FH-A-110 |  | Approval Shop Drawings for Fire Hydrant Network | 7d | 2026-01-29 A | 2026-02-04 A | ENG-SH-PW-FH-S-100 | 100% | 2026-01-29 | 2026-02-05 |

| ID | WBS | Activity | Duration | Start | Finish | Predecessors | Complete | Planned start | Planned finish |
| --- | --- | --- | --- | --- | --- | --- | --- | --- | --- |
|  | IR | **Irrigation Network** |  | 2026-01-22 | 2026-02-04 |  |  |  |  |
|  | 1 | **Main Line Sections** |  | 2026-01-22 | 2026-02-04 |  |  |  |  |
| ENG-SH-IR-ML-S-100 |  | Submission Shop Drawings for Main Line and Valves & Bulbblers and Sprinklers of Irrigation Network | 7d | 2026-01-22 A | 2026-01-28 A | MS-CS-IR FF, MS-CS-PS SS, MS-MM-100, MS-MM-130, MS-MM-140, MS-MM-150, MS-MM-160, MS-CS-IR SS, ENG-SH-RD-S-100, ENG-SH-RD-S-110 | 100% | 2026-01-22 | 2026-01-29 |
| ENG-SH-IR-ML-A-110 |  | Approval Shop Drawings for Main Line and Valves & Bulbblers and Sprinklers of Irrigation Network | 7d | 2026-01-29 A | 2026-02-04 A | ENG-SH-IR-ML-S-100 | 100% | 2026-01-29 | 2026-02-05 |
|  | MV | **Medium Voltage Network** |  | 2026-01-22 | 2026-02-04 |  |  |  |  |
| ENG-SH-MV-S-100 |  | Submission Shop Drawings for Medium Voltage Network | 7d | 2026-01-22 A | 2026-01-28 A | MS-CS-PS SS, MS-MM-100, MS-MM-130, MS-MM-140, MS-MM-150, MS-MM-160, MS-CS-MV SS, ENG-SH-RD-S-100, ENG-SH-RD-S-110 | 100% | 2026-01-22 | 2026-01-29 |
| ENG-SH-MV-A-110 |  | Approval Shop Drawings for Medium Voltage Network | 7d | 2026-01-29 A | 2026-02-04 A | ENG-SH-MV-S-100 | 100% | 2026-01-29 | 2026-02-05 |
|  | LV | **Low Voltage Network** |  | 2026-01-22 | 2026-02-04 |  |  |  |  |
| ENG-SH-LV-S-110 |  | Submission Shop Drawings for Low Voltage Network | 7d | 2026-01-22 A | 2026-01-28 A | MS-CS-PS SS, MS-MM-100, MS-MM-130, MS-MM-140, MS-MM-150, MS-MM-160, MS-CS-LV SS, ENG-SH-RD-S-100, ENG-SH-RD-S-110 | 100% | 2026-01-22 | 2026-01-29 |
| ENG-SH-LV-A-120 |  | Approval Shop Drawings for Low Voltage Network | 7d | 2026-01-29 A | 2026-02-04 A | ENG-SH-LV-S-110 | 100% | 2026-01-29 | 2026-02-05 |
|  | SL | **Street Lighting Network** |  | 2026-01-22 | 2026-02-04 |  |  |  |  |
| ENG-SH-SL-S-100 |  | Submission Shop Drawings for Street Lighting Network | 7d | 2026-01-22 A | 2026-01-28 A | MS-CS-PS SS, MS-MM-100, MS-MM-130, MS-MM-140, MS-MM-150, MS-MM-160, MS-CS-SL SS, ENG-SH-RD-S-100, ENG-SH-RD-S-110 | 100% | 2026-01-22 | 2026-01-29 |
| ENG-SH-SL-A-110 |  | Approval Shop Drawings for Street Lighting Network | 7d | 2026-01-29 A | 2026-02-04 A | ENG-SH-SL-S-100 | 100% | 2026-01-29 | 2026-02-05 |
|  | TL | **Telecom Network** |  | 2026-01-22 | 2026-02-04 |  |  |  |  |
| ENG-SH-CTV-S-100 |  | Submission Shop Drawings for CCTV and Telephone Complete Systems | 7d | 2026-01-22 A | 2026-01-28 A | MS-CS-PS SS, MS-MM-100, MS-MM-130, MS-MM-140, MS-MM-150, MS-MM-160, MS-CS-TE SS, ENG-SH-RD-S-100, ENG-SH-RD-S-110 | 100% | 2026-01-22 | 2026-01-29 |
| ENG-SH-MSN-A-120 |  | Approval Shop Drawings for MSN and Access Control Systems | 7d | 2026-01-22 A | 2026-01-28 A | ENG-SH-MSN-S-110 SS, ENG-SH-MSN-S-110 FF | 100% | 2026-01-22 | 2026-01-29 |
| ENG-SH-MSN-S-110 |  | Submission Shop Drawings for MSN and Access Control Systems | 7d | 2026-01-22 A | 2026-01-28 A | MS-CS-PS SS, MS-MM-100, MS-MM-130, MS-MM-140, MS-MM-150, MS-MM-160, MS-CS-TE SS, ENG-SH-RD-S-100, ENG-SH-RD-S-110 | 100% | 2026-01-22 | 2026-01-29 |
| ENG-SH-TE-S-100 |  | Submission Shop Drawings for Telecom Network | 7d | 2026-01-22 A | 2026-01-28 A | MS-CS-PS SS, MS-MM-100, MS-MM-130, MS-MM-140, MS-MM-150, MS-MM-160, MS-CS-TE SS, ENG-SH-RD-S-100, ENG-SH-RD-S-110 | 100% | 2026-01-22 | 2026-01-29 |
| ENG-SH-CTV-A-110 |  | Approval Shop Drawings for CCTV and Telephone Complete Systems | 7d | 2026-01-29 A | 2026-02-04 A | ENG-SH-CTV-S-100 | 100% | 2026-01-29 | 2026-02-05 |
| ENG-SH-TE-A-110 |  | Approval Shop Drawings for Telecom Network | 7d | 2026-01-29 A | 2026-02-04 A | ENG-SH-TE-S-100 | 100% | 2026-01-29 | 2026-02-05 |
|  | 1 | **Superstructure Works** |  | 2026-01-22 | 2026-02-04 |  |  |  |  |
|  | LS | **Water Pump Station** |  | 2026-01-22 | 2026-02-04 |  |  |  |  |
| ENG-SH-LS-S-160 |  | Submission Shop Drawings Package for Water Pump Station | 7d | 2026-01-22 A | 2026-01-28 A | MS-CS-PS SS, MS-MM-100, MS-MM-130, MS-MM-140, MS-MM-150, MS-MM-160, MS-CS-MV10 SS, ENG-SH-RD-S-100, ENG-SH-RD-S-110 | 100% | 2026-01-22 | 2026-01-29 |
| ENG-SH-LS-A-170 |  | Approval Shop Drawings Package for Water Pump Station | 7d | 2026-01-29 A | 2026-02-04 A | ENG-SH-LS-S-160 | 100% | 2026-01-29 | 2026-02-05 |

| ID | WBS | Activity | Duration | Start | Finish | Predecessors | Complete | Planned start | Planned finish |
| --- | --- | --- | --- | --- | --- | --- | --- | --- | --- |
|  | ST | **Storage Tank (TSE)** |  | 2026-01-22 | 2026-02-04 |  |  |  |  |
| ENG-SH-ST-S-170 |  | Submission Shop Drawings Package for Storage Tank TSE | 7d | 2026-01-22 A | 2026-01-28 A | MS-CS-PS SS, MS-MM-100, MS-MM-130, MS-MM-140, MS-MM-150, MS-MM-160, MS-CS-TE10 SS, ENG-SH-RD-S-100, ENG-SH-RD-S-110 | 100% | 2026-01-22 | 2026-01-29 |
| ENG-SH-ST-A-180 |  | Approval Shop Drawings Package for Storage Tank TSE | 7d | 2026-01-29 A | 2026-02-04 A | ENG-SH-ST-S-170 | 100% | 2026-01-29 | 2026-02-05 |
|  | CR | **Control Room** |  | 2026-01-22 | 2026-02-04 |  |  |  |  |
| ENG-SH-ST-S-180 |  | Submission Shop Drawings Package for Control Room | 7d | 2026-01-22 A | 2026-01-28 A | MS-CS-TE20 FF, MS-CS-PS SS, MS-MM-100, MS-MM-130, MS-MM-140, MS-MM-150, MS-MM-160, MS-CS-TE10 SS, MS-CS-TE20 SS, ENG-SH-RD-S-100, ENG-SH-RD-S-110 | 100% | 2026-01-22 | 2026-01-29 |
| ENG-SH-ST-A-190 |  | Approval Shop Drawings Package for Control Room | 7d | 2026-01-29 A | 2026-02-04 A | ENG-SH-ST-S-180 | 100% | 2026-01-29 | 2026-02-05 |
|  | PS | **Sewage Pump Stations** |  | 2026-01-22 | 2026-02-04 |  |  |  |  |
| ENG-SH-SPS-S-150 |  | Submission Shop Drawings Package for Sewage Pump Station | 7d | 2026-01-22 A | 2026-01-28 A | MS-CS-IR10 FF, MS-CS-PS SS, MS-MM-100, MS-MM-130, MS-MM-140, MS-MM-150, MS-MM-160, MS-CS-IR10 SS, ENG-SH-RD-S-100, ENG-SH-RD-S-110 | 100% | 2026-01-22 | 2026-01-29 |
| ENG-SH-SPS-A-160 |  | Approval Shop Drawings Package for Sewage Pump Station | 7d | 2026-01-29 A | 2026-02-04 A | ENG-SH-SPS-S-150 | 100% | 2026-01-29 | 2026-02-05 |
|  | GR | **Gaurd Room** |  | 2026-01-22 | 2026-02-04 |  |  |  |  |
| ENG-SH-GR-S-180 |  | Submission Shop Drawings Package for Gaurd Room | 7d | 2026-01-22 A | 2026-01-28 A | MS-CS-PS SS, MS-MM-100, MS-MM-130, MS-MM-140, MS-MM-150, MS-MM-160, MS-CS-TSE10 SS, ENG-SH-RD-S-100, ENG-SH-RD-S-110 | 100% | 2026-01-22 | 2026-01-29 |
| ENG-SH-GR-A-190 |  | Approval Shop Drawings Package for Gaurd Room | 7d | 2026-01-29 A | 2026-02-04 A | ENG-SH-GR-S-180 | 100% | 2026-01-29 | 2026-02-05 |
|  | FE | **Boundary Fence** |  | 2026-01-22 | 2026-02-04 |  |  |  |  |
| ENG-SH-GR-S-190 |  | Submission Shop Drawings Package for Boundary Fence | 7d | 2026-01-22 A | 2026-01-28 A | MS-CS-PS SS, MS-MM-100, MS-MM-130, MS-MM-140, MS-MM-150, MS-MM-160, MS-CS-LV10 SS, ENG-SH-RD-S-100, ENG-SH-RD-S-110 | 100% | 2026-01-22 | 2026-01-29 |
| ENG-SH-GR-A-200 |  | Approval Shop Drawings Package for Boundary Fence | 7d | 2026-01-29 A | 2026-02-04 A | ENG-SH-GR-S-190 | 100% | 2026-01-29 | 2026-02-05 |
|  | SD1 | **Method Statements** |  | 2026-01-18 | 2026-01-31 |  |  |  |  |
|  | INF | **Infrastructure Networks** |  | 2026-01-18 | 2026-01-31 |  |  |  |  |
|  | 9 | **Storm Drainage Network** |  | 2026-01-25 | 2026-01-31 |  |  |  |  |
|  | 1 | **Main Line Sections** |  | 2026-01-25 | 2026-01-28 |  |  |  |  |
| ENG-MS-SD-ML-S-100 |  | Submission Method Statement for Main Line of Storm Drainage Network | 2d | 2026-01-25 A | 2026-01-25 A | ENG-MS-RD-A-10 | 100% | 2026-01-25 | 2026-01-26 |
| ENG-MS-SD-ML-A-110 |  | Approval Method Statement for Main Line of Storm Drainage Network | 4d | 2026-01-26 A | 2026-01-28 A | ENG-MS-SD-ML-S-100 | 100% | 2026-01-26 | 2026-01-29 |
|  | 2 | **Catch Basin Sections** |  | 2026-01-25 | 2026-01-31 |  |  |  |  |
| ENG-MS-SD-CB-S-100 |  | Submission Method Statement for Catch Basin of Storm Drainage Network | 4d | 2026-01-25 A | 2026-01-27 A | ENG-MS-RD-A-10 | 100% | 2026-01-25 | 2026-01-28 |
| ENG-MS-SD-CB-A-110 |  | Approval Method Statement for Catch Basin of Storm Drainage Network | 4d | 2026-01-28 A | 2026-01-31 A | ENG-MS-SD-CB-S-100 | 100% | 2026-01-28 | 2026-02-01 |

| ID | WBS | Activity | Duration | Start | Finish | Predecessors | Complete | Planned start | Planned finish |
| --- | --- | --- | --- | --- | --- | --- | --- | --- | --- |
|  | PO | **Storm Drainage Ponds** |  | 2026-01-25 | 2026-01-31 |  |  |  |  |
| ENG-MS-DPO-S-120 |  | Submission Method Statement Package for Storm Drainage Ponds | 4d | 2026-01-25 A | 2026-01-27 A | ENG-MS-RD-A-10 | 100% | 2026-01-25 | 2026-01-28 |
| ENG-MS-DPO-A-130 |  | Approval Method Statement Package for Storm Drainage Ponds | 4d | 2026-01-28 A | 2026-01-31 A | ENG-MS-DPO-S-120 | 100% | 2026-01-28 | 2026-02-01 |
|  | 2 | **Sewage Network** |  | 2026-01-25 | 2026-01-31 |  |  |  |  |
|  | 1 | **Main Line Sections** |  | 2026-01-25 | 2026-01-31 |  |  |  |  |
| ENG-MS-SW-ML-S-100 |  | Submission Method Statement for Main Line of Sewage Network | 4d | 2026-01-25 A | 2026-01-27 A | ENG-MS-RD-A-10 | 100% | 2026-01-25 | 2026-01-28 |
| ENG-MS-SW-ML-A-110 |  | Approval Method Statement for Main Line of Sewage Network | 4d | 2026-01-28 A | 2026-01-31 A | ENG-MS-SW-ML-S-100 | 100% | 2026-01-28 | 2026-02-01 |
|  | TSE | **Treated Sewage Effluent Network** |  | 2026-01-25 | 2026-01-31 |  |  |  |  |
| ENG-MS-TSE-ML-S-110 |  | Submission Method Statement for Main Line of Treated Sewage Effluent Network | 4d | 2026-01-25 A | 2026-01-27 A | ENG-MS-RD-A-10 | 100% | 2026-01-25 | 2026-01-28 |
| ENG-MS-TSE-ML-A-120 |  | Approval Method Statement for Main Line of Treated Sewage Effluent Network | 4d | 2026-01-28 A | 2026-01-31 A | ENG-MS-TSE-ML-S-110 | 100% | 2026-01-28 | 2026-02-01 |
|  | 3 | **Potable Water Network** |  | 2026-01-25 | 2026-01-31 |  |  |  |  |
|  | 1 | **Main Line Sections** |  | 2026-01-25 | 2026-01-31 |  |  |  |  |
| ENG-MS-PW-ML-S-100 |  | Submission Method Statement for Main Line of Potable Water Network | 4d | 2026-01-25 A | 2026-01-27 A | ENG-MS-RD-A-10 | 100% | 2026-01-25 | 2026-01-28 |
| ENG-MS-PW-ML-A-110 |  | Approval Method Statement for Main Line of Potable Water Network | 4d | 2026-01-28 A | 2026-01-31 A | ENG-MS-PW-ML-S-100 | 100% | 2026-01-28 | 2026-02-01 |
|  | 4 | **Irrigation Network** |  | 2026-01-25 | 2026-01-31 |  |  |  |  |
|  | 1 | **Main Line Sections** |  | 2026-01-25 | 2026-01-31 |  |  |  |  |
| ENG-MS-IR-ML-S-100 |  | Submission Method Statement for Main Line of Irrigation Network | 4d | 2026-01-25 A | 2026-01-27 A | ENG-MS-RD-A-10 | 100% | 2026-01-25 | 2026-01-28 |
| ENG-MS-IR-ML-A-110 |  | Approval Method Statement for Main Line of Irrigation Network | 4d | 2026-01-28 A | 2026-01-31 A | ENG-MS-IR-ML-S-100 | 100% | 2026-01-28 | 2026-02-01 |
|  | 5 | **Medium Voltage Network** |  | 2026-01-25 | 2026-01-31 |  |  |  |  |
| ENG-MS-MV-S-100 |  | Submission Method Statement for Medium Voltage Network | 4d | 2026-01-25 A | 2026-01-27 A | ENG-MS-RD-A-10 | 100% | 2026-01-25 | 2026-01-28 |
| ENG-MS-MV-A-110 |  | Approval Method Statement for Medium Voltage Network | 4d | 2026-01-28 A | 2026-01-31 A | ENG-MS-MV-S-100 | 100% | 2026-01-28 | 2026-02-01 |
|  | 1 | **Low Voltage Network** |  | 2026-01-25 | 2026-01-31 |  |  |  |  |
| ENG-MS-MV-S-110 |  | Submission Method Statement for Low Voltage Network | 4d | 2026-01-25 A | 2026-01-27 A | ENG-MS-RD-A-10 | 100% | 2026-01-25 | 2026-01-28 |
| ENG-MS-MV-A-120 |  | Approval Method Statement for Low Voltage Network | 4d | 2026-01-28 A | 2026-01-31 A | ENG-MS-MV-S-110 | 100% | 2026-01-28 | 2026-02-01 |

| ID | WBS | Activity | Duration | Start | Finish | Predecessors | Complete | Planned start | Planned finish |
| --- | --- | --- | --- | --- | --- | --- | --- | --- | --- |
|  | 7 | **Street Lighting Network** |  | 2026-01-25 | 2026-01-31 |  |  |  |  |
| ENG-MS-SL-S-100 |  | Submission Method Statement for Street Lighting Network | 4d | 2026-01-25 A | 2026-01-27 A | ENG-MS-RD-A-10 | 100% | 2026-01-25 | 2026-01-28 |
| ENG-MS-SL-A-110 |  | Approval Method Statement for Street Lighting Network | 4d | 2026-01-28 A | 2026-01-31 A | ENG-MS-SL-S-100 | 100% | 2026-01-28 | 2026-02-01 |
|  | 8 | **Telecom Network** |  | 2026-01-25 | 2026-01-31 |  |  |  |  |
| ENG-MS-CTV-S-100 |  | Submission Method Statement for CCTV, Telephone, MSN, and Access Control Systems | 4d | 2026-01-25 A | 2026-01-27 A | ENG-MS-RD-A-10 | 100% | 2026-01-25 | 2026-01-28 |
| ENG-MS-TE-S-100 |  | Submission Method Statement for Telecom Network | 4d | 2026-01-25 A | 2026-01-27 A | ENG-MS-RD-A-10 | 100% | 2026-01-25 | 2026-01-28 |
| ENG-MS-CTV-A-110 |  | Approval Method Statement for CCTV, Telephone, MSN, and Access Control Systems | 4d | 2026-01-28 A | 2026-01-31 A | ENG-MS-CTV-S-100 | 100% | 2026-01-28 | 2026-02-01 |
| ENG-MS-TE-A-110 |  | Approval Method Statement for Telecom Network | 4d | 2026-01-28 A | 2026-01-31 A | ENG-MS-TE-S-100 | 100% | 2026-01-28 | 2026-02-01 |
|  | 10 | **Road Works** |  | 2026-01-18 | 2026-01-28 |  |  |  |  |
|  | 1 | **General Road Works** |  | 2026-01-18 | 2026-01-28 |  |  |  |  |
| ENG-MS-RD-S-10 |  | Submission Method Statement for Plan and Profile of Road Works | 4d | 2026-01-18 A | 2026-01-20 A | ENG-SH-RD-A-100 | 100% | 2026-01-18 | 2026-01-21 |
| ENG-MS-RD-S-30 |  | Submission Method Statement of Extraover for Pedestrian ramps | 4d | 2026-01-18 A | 2026-01-20 A | ENG-SH-RD-A-100 | 100% | 2026-01-18 | 2026-01-21 |
| ENG-MS-RD-S-40 |  | Submission Method Statement for Intersections of Road Works | 4d | 2026-01-18 A | 2026-01-20 A | ENG-SH-RD-A-100 | 100% | 2026-01-18 | 2026-01-21 |
| ENG-MS-RD-A-10 |  | Approval Method Statement for Plan and Profile of Road Works | 4d | 2026-01-21 A | 2026-01-24 A | ENG-MS-RD-S-10 | 100% | 2026-01-21 | 2026-01-25 |
| ENG-MS-RD-A-30 |  | Approval Method Statement of Extraover for Pedestrian ramps | 4d | 2026-01-21 A | 2026-01-24 A | ENG-MS-RD-S-30 | 100% | 2026-01-21 | 2026-01-25 |
| ENG-MS-RD-A-40 |  | Approval Method Statement for Intersections of Road Works | 4d | 2026-01-21 A | 2026-01-24 A | ENG-MS-RD-S-40 | 100% | 2026-01-21 | 2026-01-25 |
| ENG-MS-RD-S-20 |  | Submission Method Statement for Roads Typical Sections and Pavement Details | 4d | 2026-01-22 A | 2026-01-25 A | ENG-SH-RD-A-110 SS | 100% | 2026-01-22 | 2026-01-26 |
| ENG-MS-RD-A-20 |  | Approval Method Statement for Roads Typical Sections and Pavement Details | 4d | 2026-01-26 A | 2026-01-28 A | ENG-MS-RD-S-20 | 100% | 2026-01-26 | 2026-01-29 |
|  | 10 | **Landscape Works** |  | 2026-01-22 | 2026-01-28 |  |  |  |  |
| ENG-MS-HS-S-10 |  | Submission Method Statement for Landscaping Works | 4d | 2026-01-22 A | 2026-01-25 A | ENG-SH-RD-A-110 SS | 100% | 2026-01-22 | 2026-01-26 |
| ENG-MS-HS-A-10 |  | Approval Method Statement for Landscaping Works | 4d | 2026-01-26 A | 2026-01-28 A | ENG-MS-HS-S-10 | 100% | 2026-01-26 | 2026-01-29 |
|  | 11 | **Traffic Sign Boards and Road Marking** |  | 2026-01-22 | 2026-01-28 |  |  |  |  |
| ENG-MS-MRK-S-10 |  | Submission Method Statement for Roads Markings | 4d | 2026-01-22 A | 2026-01-25 A | ENG-SH-RD-A-110 SS | 100% | 2026-01-22 | 2026-01-26 |
| ENG-MS-TSB-S-10 |  | Submission Method Statement for Traffic Signs Boards | 4d | 2026-01-22 A | 2026-01-25 A | ENG-SH-RD-A-110 SS | 100% | 2026-01-22 | 2026-01-26 |
| ENG-MS-MRK-A-10 |  | Approval Method Statement for Roads Markings | 4d | 2026-01-26 A | 2026-01-28 A | ENG-MS-MRK-S-10 | 100% | 2026-01-26 | 2026-01-29 |
| ENG-MS-TSB-A-10 |  | Approval Method Statement for Traffic Signs Boards | 4d | 2026-01-26 A | 2026-01-28 A | ENG-MS-TSB-S-10 | 100% | 2026-01-26 | 2026-01-29 |

| ID | WBS | Activity | Duration | Start | Finish | Predecessors | Complete | Planned start | Planned finish | Resources | 01- Network |
| --- | --- | --- | --- | --- | --- | --- | --- | --- | --- | --- | --- |
|  | 1 | **Superstructure Works** |  | 2026-01-25 | 2026-01-31 |  |  |  |  |  |  |
|  | LS | **Water Pump Station** |  | 2026-01-25 | 2026-01-31 |  |  |  |  |  |  |
| ENG-MS-LS-S-170 |  | Submission Method Statement Package for Water Pump Station | 4d | 2026-01-25 A | 2026-01-27 A | ENG-MS-RD-A-10 | 100% | 2026-01-25 | 2026-01-28 |  |  |
| ENG-MS-LS-A-180 |  | Approval Method Statement Package for Water Pump Station | 4d | 2026-01-28 A | 2026-01-31 A | ENG-MS-LS-S-170 | 100% | 2026-01-28 | 2026-02-01 |  |  |
|  | ST | **Storage Tank (TSE)** |  | 2026-01-25 | 2026-01-31 |  |  |  |  |  |  |
| ENG-MS-ST-S-180 |  | Submission Method Statement Package for Storage Tank TSE | 4d | 2026-01-25 A | 2026-01-27 A | ENG-MS-RD-A-10 | 100% | 2026-01-25 | 2026-01-28 |  |  |
| ENG-MS-ST-A-190 |  | Approval Method Statement Package for Storage Tank TSE | 4d | 2026-01-28 A | 2026-01-31 A | ENG-MS-ST-S-180 | 100% | 2026-01-28 | 2026-02-01 |  |  |
|  | ST1 | **Control Room** |  | 2026-01-25 | 2026-01-31 |  |  |  |  |  |  |
| ENG-MS-ST-S-190 |  | Submission Method Statement Package for Control Room | 4d | 2026-01-25 A | 2026-01-27 A | ENG-MS-RD-A-10 | 100% | 2026-01-25 | 2026-01-28 |  |  |
| ENG-MS-ST-A-200 |  | Approval Method Statement Package for Control Room | 4d | 2026-01-28 A | 2026-01-31 A | ENG-MS-ST-S-190 | 100% | 2026-01-28 | 2026-02-01 |  |  |
|  | PS | **Sewage Pump Stations** |  | 2026-01-25 | 2026-01-31 |  |  |  |  |  |  |
| ENG-MS-SPS-S-160 |  | Submission Method Statement Package for Sewage Pump Station | 4d | 2026-01-25 A | 2026-01-27 A | ENG-MS-RD-A-10 | 100% | 2026-01-25 | 2026-01-28 |  |  |
| ENG-MS-SPS-A-170 |  | Approval Method Statement Package for Sewage Pump Station | 4d | 2026-01-28 A | 2026-01-31 A | ENG-MS-SPS-S-160 | 100% | 2026-01-28 | 2026-02-01 |  |  |
|  | GR | **Gaurd Room** |  | 2026-01-25 | 2026-01-31 |  |  |  |  |  |  |
| ENG-MS-GR-S-200 |  | Submission Method Statement Package for Gaurd Room | 4d | 2026-01-25 A | 2026-01-27 A | ENG-MS-RD-A-10 | 100% | 2026-01-25 | 2026-01-28 |  |  |
| ENG-MS-GR-A-210 |  | Approval Method Statement Package for Gaurd Room | 4d | 2026-01-28 A | 2026-01-31 A | ENG-MS-GR-S-200 | 100% | 2026-01-28 | 2026-02-01 |  |  |
|  | FE | **Boundary Fence** |  | 2026-01-25 | 2026-01-31 |  |  |  |  |  |  |
| ENG-MS-GR-S-210 |  | Submission Method Statement Package for Boundary Fence | 4d | 2026-01-25 A | 2026-01-27 A | ENG-MS-RD-A-10 | 100% | 2026-01-25 | 2026-01-28 |  |  |
| ENG-MS-GR-A-220 |  | Approval Method Statement Package for Boundary Fence | 4d | 2026-01-28 A | 2026-01-31 A | ENG-MS-GR-S-210 | 100% | 2026-01-28 | 2026-02-01 |  |  |
|  | SD11 | **Material Submittals and Approvals** |  | 2026-01-06 | 2026-12-06 |  |  |  |  |  |  |
|  | 2 | **Short Lead Time Items** |  | 2026-01-06 | 2026-06-13 |  |  |  |  |  |  |
|  | INF | **Infrastructure Networks** |  | 2026-01-06 | 2026-01-31 |  |  |  |  |  |  |
|  | 9 | **Storm Drainage Network** |  | 2026-01-06 | 2026-01-19 |  |  |  |  |  |  |
|  | MS | **Submission of Material** |  | 2026-01-06 | 2026-01-12 |  |  |  |  |  |  |
|  | 1 | **Main Line Sections** |  | 2026-01-06 | 2026-01-12 |  |  |  |  |  |  |
| ENG-MT-SD-ML-S-100 |  | Material Submittal for Manholes of Storm Drainage Network | 7d | 2026-01-06 A | 2026-01-12 A | MS-CS-SD SS | 100% | 2026-01-06 | 2026-01-13 | physical units [59.54 h] | MA |
| ENG-MT-SD-ML-S-110 |  | Material Submittal for Main Line Pipes of Storm Drainage Network | 7d | 2026-01-06 A | 2026-01-12 A | MS-CS-SD SS | 100% | 2026-01-06 | 2026-01-13 | physical units [59.54 h] | MA |

| ID | WBS | Activity | Duration | Start | Finish | Predecessors | Complete | Planned start | Planned finish | Resources | 01- Network |
| --- | --- | --- | --- | --- | --- | --- | --- | --- | --- | --- | --- |
|  | 2 | **Catch Basin Sections** |  | 2026-01-06 | 2026-01-12 |  |  |  |  |  |  |
| ENG-MT-SD-CB-S-100 |  | Material Submittal for Catch Basins of Storm Drainage Network | 7d | 2026-01-06 A | 2026-01-12 A | MS-CS-SD SS | 100% | 2026-01-06 | 2026-01-13 | physical units [59.54 h] | MA |
| ENG-MT-SD-CB-S-110 |  | Material Submittal for Catch Basin Pipes of Storm Drainage Network | 7d | 2026-01-06 A | 2026-01-12 A | MS-CS-SD SS | 100% | 2026-01-06 | 2026-01-13 | physical units [59.54 h] | MA |
|  | 4 | **Storm Drainage Pond** |  | 2026-01-06 | 2026-01-12 |  |  |  |  |  |  |
| ENG-MT-DPO-CV-S-100 |  | Material Submittal for Materials of Storm Drainage Ponds | 7d | 2026-01-06 A | 2026-01-12 A | MS-CS-SL10 SS | 100% | 2026-01-06 | 2026-01-13 | physical units [59.54 h] | MA |
|  | 3 | **Testing and Finishes** |  | 2026-01-06 | 2026-01-12 |  |  |  |  |  |  |
| ENG-MT-SD-TF-S-100 |  | Material Submittal for Manhole Covers of Storm Drainage Network | 7d | 2026-01-06 A | 2026-01-12 A | MS-CS-SD SS | 100% | 2026-01-06 | 2026-01-13 | physical units [59.54 h] | MA |
| ENG-MT-SD-TF-S-110 |  | Material Submittal for Catch Basin Covers of Storm Drainage Network | 7d | 2026-01-06 A | 2026-01-12 A | MS-CS-SD SS | 100% | 2026-01-06 | 2026-01-13 | physical units [59.54 h] | MA |
|  | MA | **Approval of Material** |  | 2026-01-13 | 2026-01-19 |  |  |  |  |  |  |
|  | 1 | **Main Line Sections** |  | 2026-01-13 | 2026-01-19 |  |  |  |  |  |  |
| ENG-MT-SD-ML-A-100 |  | Material Approval for Manholes of Storm Drainage Network | 6d | 2026-01-13 A | 2026-01-19 A | ENG-MT-SD-ML-S-100 | 100% |  |  | MH depth 1.5 - 2.5m; MH depth 2.5 - 3.5m; MH depth 3.5 - 4.5m; MH depth > 4.50m; MH depth 2.5 -3.5m; MH depth > 3.50m; physical units [51.03 h] | MA |
| ENG-MT-SD-ML-A-110 |  | Material Approval for Main Line Pipes of Storm Drainage Network | 6d | 2026-01-13 A | 2026-01-19 A | ENG-MT-SD-ML-S-110 | 100% |  |  | Depth Between 0m to 1.50m; Depth Between 1.50m to 2.50m; Depth Between 2.50m to 3.50m; Depth > 3.50m; Depth Between 3.50m to 4.50m; Depth > 4.50m; GRP Pipe, 900mm diameter with Depth Between 3.51m to 4.50m; physical units [51.03 h] | MA |
|  | 2 | **Catch Basin Sections** |  | 2026-01-13 | 2026-01-19 |  |  |  |  |  |  |
| ENG-MT-SD-CB-A-100 |  | Material Approval for Catch Basins of Storm Drainage Network | 6d | 2026-01-13 A | 2026-01-19 A | ENG-MT-SD-CB-S-100 | 100% |  |  | Single Catch Basin 1000mm x 1000mm; Double Catch Basin 1200mm x 2300mm; physical units [51.03 h] | MA |
| ENG-MT-SD-CB-A-110 |  | Material Approval for Catch Basin Pipes of Storm Drainage Network | 6d | 2026-01-13 A | 2026-01-19 A | ENG-MT-SD-CB-S-110 | 100% |  |  | Depth Between 0m to 1.50m; Depth Between 1.50m to 2.50m; Depth Between 2.50m to 3.50m; Depth > 3.50m; Depth Between 3.50m to 4.50m; Depth > 4.50m; GRP Pipe, 900mm diameter with Depth Between 3.51m to 4.50m; physical units [51.03 h] | MA |
|  | 4 | **Storm Drainage Pond** |  | 2026-01-13 | 2026-01-19 |  |  |  |  |  |  |
| ENG-MT-DPO-CV-A-110 |  | Material Approval for Materials of Storm Drainage Ponds | 6d | 2026-01-13 A | 2026-01-19 A | ENG-MT-DPO-CV-S-100 | 100% |  |  | Finished grouted riprap for Pond 300mm as per drawings; physical units [51.03 h] | MA |
|  | 3 | **Testing and Finishes** |  | 2026-01-13 | 2026-01-19 |  |  |  |  |  |  |
| ENG-MT-SD-TF-A-100 |  | Material Approval for Manhole Covers of Storm Drainage Network | 6d | 2026-01-13 A | 2026-01-19 A | ENG-MT-SD-TF-S-100 | 100% |  |  | MH depth 1.5 - 2.5m; MH depth 2.5 - 3.5m; MH depth 3.5 - 4.5m; MH depth > 4.50m; MH depth 2.5 -3.5m; MH depth > 3.50m; physical units [51.03 h] | MA |
| ENG-MT-SD-TF-A-110 |  | Material Approval for Catch Basin Covers of Storm Drainage Network | 6d | 2026-01-13 A | 2026-01-19 A | ENG-MT-SD-TF-S-110 | 100% |  |  | Single Catch Basin 1000mm x 1000mm; Double Catch Basin 1200mm x 2300mm; physical units [51.03 h] | MA |
|  | 2 | **Sewage Network** |  | 2026-01-06 | 2026-01-19 |  |  |  |  |  |  |
|  | MS | **Submission of Material** |  | 2026-01-06 | 2026-01-12 |  |  |  |  |  |  |
|  | 1 | **Main Line Sections** |  | 2026-01-06 | 2026-01-12 |  |  |  |  |  |  |
| ENG-MT-SW-ML-S-100 |  | Material Submittal for Manholes of Sewage Network | 7d | 2026-01-06 A | 2026-01-12 A | MS-CS-SW SS | 100% | 2026-01-06 | 2026-01-13 | physical units [59.54 h] | MA |
| ENG-MT-SW-ML-S-110 |  | Material Submittal for Main Line Pipes of Sewage Network | 7d | 2026-01-06 A | 2026-01-12 A | MS-CS-SW SS | 100% | 2026-01-06 | 2026-01-13 | physical units [59.54 h] | MA |

| ID | WBS | Activity | Duration | Start | Finish | Predecessors | Complete | Planned start | Planned finish | Resources | 01- Network |
| --- | --- | --- | --- | --- | --- | --- | --- | --- | --- | --- | --- |
|  | 3 | **Testing and Finishes** |  | 2026-01-06 | 2026-01-12 |  |  |  |  |  |  |
| ENG-MT-SW-TF-S-100 |  | Material Submittal for Manhole Covers of Sewage Network | 7d | 2026-01-06 A | 2026-01-12 A | MS-CS-SW SS | 100% | 2026-01-06 | 2026-01-13 | physical units [59.54 h] | MA |
|  | MA | **Approval of Material** |  | 2026-01-13 | 2026-01-19 |  |  |  |  |  |  |
|  | 1 | **Main Line Sections** |  | 2026-01-13 | 2026-01-19 |  |  |  |  |  |  |
| ENG-MT-SW-ML-A-100 |  | Material Approval for Manholes of Sewage Network | 6d | 2026-01-13 A | 2026-01-19 A | ENG-MT-SW-ML-S-100 | 100% |  |  | Depth Between 0m to 1.50m; Depth Between 1.50m to 2.50m; Depth > 2.50m; Depth Between 2.50m to 3.50m; Depth Between 3.50m to 4.50m; Depth Between 4.50m to 5.50m; Depth > 5.50m; HDPE Force Main (PE 100, SDR 11, PN 16 bar) DN 160 mm diameter, in trenches depth: 0- 1.5m; HDPE Force Main (PE 100, SDR 11, PN 16 bar) DN 160 mm diameter, in trenches depth: 1.51- 2.5m; Air valves with dia 50 mm; Gate valves Dia 50 mm; Air valve chamber (1000x 1000 mm); Depth: 0 - 1.5m; Depth: 1.51 - 2.5m; Depth: 2.51 - 3.5m; Depth: 3.51 - 4.5m; Depth: 4.51 - 5.5m; physical units [51.03 h] | MA |
| ENG-MT-SW-ML-A-110 |  | Material Approval for Main Line Pipes of Sewage Network | 7d | 2026-01-13 A | 2026-01-19 A | ENG-MT-SW-ML-S-110 | 100% | 2026-01-13 | 2026-01-20 | physical units [59.54 h] | MA |
|  | 3 | **Testing and Finishes** |  | 2026-01-13 | 2026-01-19 |  |  |  |  |  |  |
| ENG-MT-SW-TF-A-100 |  | Material Approval for Manhole Covers of Sewage Network | 6d | 2026-01-13 A | 2026-01-19 A | ENG-MT-SW-TF-S-100 | 100% |  |  | Depth: 0 - 1.5m; Depth: 1.51 - 2.5m; Depth: 2.51 - 3.5m; Depth: 3.51 - 4.5m; Depth: 4.51 - 5.5m; Depth > 5.50m; physical units [51.03 h] | MA |
|  | 1 | **Treated Sewage Effluent (Tse)** |  | 2026-01-06 | 2026-01-19 |  |  |  |  |  |  |
|  | MS | **Submission of Material** |  | 2026-01-06 | 2026-01-12 |  |  |  |  |  |  |
| ENG-MT-IR-ML-S-120 |  | Material Submittal for Materials of Treated Sewage Effluent (TSE) | 7d | 2026-01-06 A | 2026-01-12 A | MS-CS-TSE SS | 100% | 2026-01-06 | 2026-01-13 | physical units [59.54 h] | MA |
|  | MA | **Approval of Material** |  | 2026-01-13 | 2026-01-19 |  |  |  |  |  |  |
| ENG-MT-IR-ML-A-120 |  | Material Approval for Materials of Treated Sewage Effluent (TSE) | 6d | 2026-01-13 A | 2026-01-19 A | ENG-MT-IR-ML-S-120 | 100% |  |  | Depth Between 0m to 1.50m; Depth Between 1.50m to 2.50m; Depth > 2.50m; Gate valves dia 50 mm; Gate valves dia 100 mm; Gate valves dia 150 mm; Gate valves dia 200 mm; Air valves with dia 50 mm; Washout valve dia 100 mm; Wash out chamber (2500x 2500mm); Air valve chamber (1000x 1000 mm); Flow meter chamber (1500x 3000 mm); Flow meter dia 150 mm; Glass Fused Bolted (GLS) 1500 m3 Tank with associated accessories & manufacturer recommendation for the foundation; physical units [51.03 h] | MA |
|  | 3 | **Potable Water Network** |  | 2026-01-06 | 2026-01-19 |  |  |  |  |  |  |
|  | MS | **Submission of Material** |  | 2026-01-06 | 2026-01-12 |  |  |  |  |  |  |
|  | 1 | **Main Line Sections** |  | 2026-01-06 | 2026-01-12 |  |  |  |  |  |  |
| ENG-MT-PW-ML-S-100 |  | Material Submittal for Main Line Pipes and Materials of Potable Water Network | 7d | 2026-01-06 A | 2026-01-12 A | MS-CS-PW SS | 100% | 2026-01-06 | 2026-01-13 | physical units [59.54 h] | MA |
| ENG-MT-PW-ML-S-110 |  | Material Submittal for Main Line Valves of Potable Water Network | 7d | 2026-01-06 A | 2026-01-12 A | MS-CS-PW SS | 100% | 2026-01-06 | 2026-01-13 | physical units [59.54 h] | MA |
|  | 3 | **Fire Hydrant** |  | 2026-01-06 | 2026-01-12 |  |  |  |  |  |  |
| ENG-MT-PW-FH-S-100 |  | Material Submittal for Fire Hydrant of Potable Water Network | 7d | 2026-01-06 A | 2026-01-12 A | MS-CS-PW SS | 100% | 2026-01-06 | 2026-01-13 | physical units [59.54 h] | MA |
|  | 4 | **Testing and Finishes** |  | 2026-01-06 | 2026-01-12 |  |  |  |  |  |  |
| ENG-MT-PW-TF-S-100 |  | Material Submittal for Surface Box of Potable Water Network | 7d | 2026-01-06 A | 2026-01-12 A | MS-CS-PW SS | 100% | 2026-01-06 | 2026-01-13 | physical units [59.54 h] | MA |
|  | MA | **Approval of Material** |  | 2026-01-13 | 2026-01-19 |  |  |  |  |  |  |
|  | 1 | **Main Line Sections** |  | 2026-01-13 | 2026-01-19 |  |  |  |  |  |  |
| ENG-MT-PW-ML-A-100 |  | Material Approval for Main Line Pipes and Materials of Potable Water Network | 6d | 2026-01-13 A | 2026-01-19 A | ENG-MT-PW-ML-S-100 | 100% |  |  | Depth Between 0m to 1.50m; Depth Between 1.50m to 2.50m; Depth > 2.50m; Glass Fused Bolted (GLS) 1500 m3 Tank with associated accessories & manufacturer recommendation for the foundation; physical units [51.03 h] | MA |
| ENG-MT-PW-ML-A-110 |  | Material Approval for Valves of Potable Water Network | 6d | 2026-01-13 A | 2026-01-19 A | ENG-MT-PW-ML-S-110 | 100% |  |  | Gate valves Dia 50 mm; Gate valves Dia 100 mm; Gate valves Dia 150 mm; Gate valves Dia 250 mm; Air valves with Dia 50 mm; Washout valve Dia 100 mm; Wash out chamber (2500x 2500mm); Air valve chamber (1000x 1000 mm); Flow meter chamber (1500x 2500 mm); Flow meter dia 100 mm; physical units [51.03 h] | MA |

| ID | WBS | Activity | Duration | Start | Finish | Predecessors | Complete | Planned start | Planned finish | Resources | 01- Network |
| --- | --- | --- | --- | --- | --- | --- | --- | --- | --- | --- | --- |
|  | 3 | **Fire Hydrant** |  | 2026-01-13 | 2026-01-19 |  |  |  |  |  |  |
| ENG-MT-PW-FH-A-100 |  | Material Approval for Fire Hydrants of Potable Water Network | 6d | 2026-01-13 A | 2026-01-19 A | ENG-MT-PW-FH-S-100 | 100% |  |  | 3-outlet fire hydrant (2 x 2.5 inch and 1 x 4.5 inch) in the form of a separate dry vacuum cylinder, complete according to drawings.; physical units [51.03 h] | MA |
|  | 4 | **Testing and Finishes** |  | 2026-01-13 | 2026-01-19 |  |  |  |  |  |  |
| ENG-MT-PW-TF-A-100 |  | Material Approval for Surface Box of Potable Water Network | 6d | 2026-01-13 A | 2026-01-19 A | ENG-MT-PW-TF-S-100 | 100% |  |  | Depth Between 0m to 1.50m; Depth Between 1.50m to 2.50m; Depth > 2.50m; physical units [51.03 h] | MA |
|  | 4 | **Irrigation Network** |  | 2026-01-06 | 2026-01-19 |  |  |  |  |  |  |
|  | MS | **Submission of Material** |  | 2026-01-06 | 2026-01-12 |  |  |  |  |  |  |
|  | 1 | **Main Line Pipes** |  | 2026-01-06 | 2026-01-12 |  |  |  |  |  |  |
| ENG-MT-IR-ML-S-100 |  | Material Submittal for Main Line Pipes of Irrigation Network | 7d | 2026-01-06 A | 2026-01-12 A | MS-CS-IR SS | 100% | 2026-01-06 | 2026-01-13 | physical units [59.54 h] | MA |
| ENG-MT-IR-ML-S-110 |  | Material Submittal for Main Line Valves of Irrigation Network | 7d | 2026-01-06 A | 2026-01-12 A | MS-CS-IR SS | 100% | 2026-01-06 | 2026-01-13 | physical units [59.54 h] | MA |
|  | MA | **Approval of Material** |  | 2026-01-13 | 2026-01-19 |  |  |  |  |  |  |
|  | 1 | **Main Line Pipes** |  | 2026-01-13 | 2026-01-19 |  |  |  |  |  |  |
| ENG-MT-IR-ML-A-100 |  | Material Approval for Main Line Pipes of Irrigation Network | 6d | 2026-01-13 A | 2026-01-19 A | ENG-MT-IR-ML-S-100 | 100% |  |  | pipe line O.D 32 mm PN 10, in depth 0 to 1.5 m; pipe line O.D 40 mm PN 10, in depth 0 to 1.5 m; pipe line O.D 50 mm PN 10, in depth 0 to 1.5 m; physical units [51.03 h] | MA |
| ENG-MT-IR-ML-A-110 |  | Material Approval for Valves of Irrigation Network | 6d | 2026-01-13 A | 2026-01-19 A | ENG-MT-IR-ML-S-110 | 100% |  |  | Gate valve 50 mm PN16; Direct Burried Gate valve 40 mm PN16; Pressure–compensating bubblers 110 Lit/Hr; Flushing Bronze gate valve dia 1.5" inside PVC box; Air release valve 1.5" inside PVC box; Extra flexible pressure compensating on surface inline dripline`s, O.D. is 16.1 mm; Electrical Solenoid Valve ( 1.5") inside PVC box; Electrical Solenoid Valve ( 2") inside PVC box; Quick coupling valve 1" inside a round valve box 10" size with a manual gate valve, hose swivel and key with all accessories; Advanced Irrigation controller subject to client approval, can connect with Centarl Control system and cabable to integrate with Smart City systems,BMS or Scada system ,Can record the real flow rate per stations; Decoder cables 12 AWG between valves and controllers, The cables shall be pulled through 32? UPVC conduit and inspection 10" round valve box every 100 meters, as per standard specification and drawings; Preparing the irrigation program for the entire system and providing technical services for monitoring and controlling the central irrigation systems by linking the controller with the Main Program System (by GSM).; physical units [51.03 h] | MA |
|  | 5 | **Medium Voltage Network** |  | 2026-01-06 | 2026-01-19 |  |  |  |  |  |  |
|  | MS | **Submission of Material** |  | 2026-01-06 | 2026-01-12 |  |  |  |  |  |  |
| ENG-MT-MV-ML-S-100 |  | Material Submittal for Medium Voltage Materials of Medium Voltage Network | 7d | 2026-01-06 A | 2026-01-12 A | MS-CS-MV FF, MS-CS-MV SS | 100% | 2026-01-06 | 2026-01-13 | physical units [59.54 h] | MA |
|  | MA | **Approval of Material** |  | 2026-01-13 | 2026-01-19 |  |  |  |  |  |  |
| ENG-MT-MV-ML-A-100 |  | Material Approval for Medium Voltage Materials of Medium Voltage Network | 6d | 2026-01-13 A | 2026-01-19 A | ENG-MT-MV-ML-S-100 | 100% |  |  | Excavation for Trench size 40cm wide and 80cm deep (for 1 cable); Excavation for Trench Size 60cm wide and 80cm deep (for 2 cables); Excavation for Trench Size 90cm wide and 80cm deep (for 3 cables); Excavation for Trench Size 180cm wide and 80cm deep (for 6 cables); Excavation for Trench Size 210 cm wide and 80cm deep (for 7 cables); Excavation for Trench Size 240cm wide and 80cm deep (for 8 cables); Duct bank for (33) cables; Duct bank for (21) cables; Duct bank for (15) cables; HV Cable Road Crossing; physical units [51.03 h] | MA |
|  | 11 | **Low Voltage Network** |  | 2026-01-06 | 2026-01-19 |  |  |  |  |  |  |
|  | MS | **Submission of Material** |  | 2026-01-06 | 2026-01-12 |  |  |  |  |  |  |
|  | 1 | **Main Low Voltage Cables Works** |  | 2026-01-06 | 2026-01-12 |  |  |  |  |  |  |
| PRO-LV-ML-S-100 |  | Material Submittal for Main Low Voltage Cables of Low Voltage Network | 7d | 2026-01-06 A | 2026-01-12 A | MS-CS-LV SS | 100% | 2026-01-06 | 2026-01-13 | physical units [59.54 h] | MA |
|  | 2 | **Service Low Voltage Cables Works** |  | 2026-01-06 | 2026-01-12 |  |  |  |  |  |  |
| PRO-LV-HC-S-100 |  | Material Submittal for Service Low Voltage Cables of Low Voltage Network | 7d | 2026-01-06 A | 2026-01-12 A | MS-CS-LV SS | 100% | 2026-01-06 | 2026-01-13 | physical units [59.54 h] | MA |

| ID | WBS | Activity | Duration | Start | Finish | Predecessors | Complete | Planned start | Planned finish | Resources | 01- Network |
| --- | --- | --- | --- | --- | --- | --- | --- | --- | --- | --- | --- |
|  | 3 | **Distribution Pillars Works** |  | 2026-01-06 | 2026-01-12 |  |  |  |  |  |  |
| PRO-LV-DP-S-100 |  | Material Submittal for Distribution Pillars of Low Voltage Network | 7d | 2026-01-06 A | 2026-01-12 A | MS-CS-LV SS | 100% | 2026-01-06 | 2026-01-13 | physical units [59.54 h] | MA |
| PRO-LV-DP-S-110 |  | Material Submittal for Low Voltage Earthing of Low Voltage Network | 7d | 2026-01-06 A | 2026-01-12 A | MS-CS-LV SS | 100% | 2026-01-06 | 2026-01-13 | physical units [59.54 h] | MA |
|  | 4 | **Termination and Testing Works** |  | 2026-01-06 | 2026-01-12 |  |  |  |  |  |  |
| PRO-LV-TT-S-100 |  | Material Submittal for Cable Lugs of Low Voltage Network | 7d | 2026-01-06 A | 2026-01-12 A | MS-CS-LV SS | 100% | 2026-01-06 | 2026-01-13 | physical units [59.54 h] | MA |
|  | MA | **Approval of Material** |  | 2026-01-13 | 2026-01-19 |  |  |  |  |  |  |
|  | 1 | **Main Low Voltage Cables Works** |  | 2026-01-13 | 2026-01-19 |  |  |  |  |  |  |
| PRO-LV-ML-A-100 |  | Material Approval for Main Low Voltage Cables of Low Voltage Network | 6d | 2026-01-13 A | 2026-01-19 A | PRO-LV-ML-S-100 | 100% |  |  | Road crossing ducts, 2 ways (2 x 150mm HDPE); Road crossing ducts, 2 ways (2 x 110mm UPVC); Road crossing ducts, 3 ways (3 x 110mm UPVC); 4C-300mm2 CU/XLPE / PVC ARMORED CABLE; 4C-240mm2 CU/XLPE / PVC ARMORED CABLE; 4C-185mm2 CU/XLPE / PVC ARMORED CABLE; 4C-50mm2 CU/XLPE / PVC ARMORED CABLE; 4C-16mm2 CU/XLPE / PVC ARMORED CABLE; 4C-16MM2 CU/XLPE / PVC CABLE; 1Cx150sq.mm2,Cu, PVC wire; 1Cx120sq.mm2,Cu, PVC wire; 1Cx95sq.mm,Cu, PVC wire; 1Cx70sq.mm2,Cu, PVC wire; 1Cx25sq.mm2,Cu, PVC wire; 1Cx16sq.mm2,Cu, PVC wire; 1Cx10sq.mm2,Cu, PVC wire; physical units [51.03 h] | MA |
|  | 2 | **Service Low Voltage Cables Works** |  | 2026-01-13 | 2026-01-19 |  |  |  |  |  |  |
| PRO-LV-HC-A-100 |  | Material Approval for Service Low Voltage Cables of Low Voltage Network | 6d | 2026-01-13 A | 2026-01-19 A | PRO-LV-HC-S-100 | 100% |  |  | Road crossing ducts, 2 ways (2 x 150mm HDPE); Road crossing ducts, 2 ways (2 x 110mm UPVC); Road crossing ducts, 3 ways (3 x 110mm UPVC); 4C-300mm2 CU/XLPE / PVC ARMORED CABLE; 4C-240mm2 CU/XLPE / PVC ARMORED CABLE; 4C-185mm2 CU/XLPE / PVC ARMORED CABLE; 4C-50mm2 CU/XLPE / PVC ARMORED CABLE; 4C-16mm2 CU/XLPE / PVC ARMORED CABLE; 4C-16MM2 CU/XLPE / PVC CABLE; 1Cx150sq.mm2,Cu, PVC wire; 1Cx120sq.mm2,Cu, PVC wire; 1Cx95sq.mm,Cu, PVC wire; 1Cx70sq.mm2,Cu, PVC wire; 1Cx25sq.mm2,Cu, PVC wire; 1Cx16sq.mm2,Cu, PVC wire; 1Cx10sq.mm2,Cu, PVC wire; physical units [51.03 h] | MA |
|  | 3 | **Distribution Pillars Works** |  | 2026-01-13 | 2026-01-19 |  |  |  |  |  |  |
| PRO-LV-DP-A-100 |  | Material Approval for Distribution Pillars of Low Voltage Network | 6d | 2026-01-13 A | 2026-01-19 A | PRO-LV-DP-S-100 | 100% |  |  | Supply and installation of KWH meter mounting frame including concrete block for installation of KWH meter according to the standards and specifications of SEC.; physical units [51.03 h] | MA |
| PRO-LV-DP-A-110 |  | Material Approval for Low Voltage Earthing of Low Voltage Network | 6d | 2026-01-13 A | 2026-01-19 A | PRO-LV-DP-S-110 | 100% |  |  | Road crossing ducts, 2 ways (2 x 150mm HDPE); Road crossing ducts, 2 ways (2 x 110mm UPVC); Road crossing ducts, 3 ways (3 x 110mm UPVC); 4C-300mm2 CU/XLPE / PVC ARMORED CABLE; 4C-240mm2 CU/XLPE / PVC ARMORED CABLE; 4C-185mm2 CU/XLPE / PVC ARMORED CABLE; 4C-50mm2 CU/XLPE / PVC ARMORED CABLE; 4C-16mm2 CU/XLPE / PVC ARMORED CABLE; 4C-16MM2 CU/XLPE / PVC CABLE; 1Cx150sq.mm2,Cu, PVC wire; 1Cx120sq.mm2,Cu, PVC wire; 1Cx95sq.mm,Cu, PVC wire; 1Cx70sq.mm2,Cu, PVC wire; 1Cx25sq.mm2,Cu, PVC wire; 1Cx16sq.mm2,Cu, PVC wire; 1Cx10sq.mm2,Cu, PVC wire; physical units [51.03 h] | MA |
|  | 4 | **Termination and Testing Works** |  | 2026-01-13 | 2026-01-19 |  |  |  |  |  |  |
| PRO-LV-TT-A-100 |  | Material Approval for Cable Lugs of Low Voltage Network | 7d | 2026-01-13 A | 2026-01-19 A | PRO-LV-TT-S-100 | 100% | 2026-01-13 | 2026-01-20 | physical units [59.54 h] | MA |
|  | 7 | **Street Lighting Network** |  | 2026-01-06 | 2026-01-19 |  |  |  |  |  |  |
|  | MS | **Submission of Material** |  | 2026-01-06 | 2026-01-12 |  |  |  |  |  |  |
|  | 1 | **Cabling Works** |  | 2026-01-06 | 2026-01-12 |  |  |  |  |  |  |
| ENG-MT-SL-ML-S-100 |  | Material Submittal for Lighting Cables of Street Lighting Network | 7d | 2026-01-06 A | 2026-01-12 A | MS-CS-SL FF, MS-CS-SL SS | 100% | 2026-01-06 | 2026-01-13 | physical units [59.54 h] | MA |
|  | 2 | **Lighting Poles Works** |  | 2026-01-06 | 2026-01-12 |  |  |  |  |  |  |
| ENG-MT-SL-S-100 |  | Material Submittal for Lighting Poles Concrete Foundations of Street Lighting Network | 7d | 2026-01-06 A | 2026-01-12 A | MS-CS-SL SS | 100% | 2026-01-06 | 2026-01-13 | physical units [59.54 h] | MA |
| ENG-MT-SL-S-110 |  | Material Submittal for Lighting Poles of Street Lighting Network | 7d | 2026-01-06 A | 2026-01-12 A | MS-CS-SL SS | 100% | 2026-01-06 | 2026-01-13 | physical units [59.54 h] | MA |
| ENG-MT-SL-S-120 |  | Material Submittal for Lighting Fixtures of Street Lighting Network | 7d | 2026-01-06 A | 2026-01-12 A | MS-CS-SL SS | 100% | 2026-01-06 | 2026-01-13 | physical units [59.54 h] | MA |
|  | 3 | **Distribution Panel Board** |  | 2026-01-06 | 2026-01-12 |  |  |  |  |  |  |
| ENG-MT-SL-DB-S-100 |  | Material Submittal for Lighting Distrubution Panel Boards of Street Lighting Network | 7d | 2026-01-06 A | 2026-01-12 A | MS-CS-SL SS | 100% | 2026-01-06 | 2026-01-13 | physical units [59.54 h] | MA |

| ID | WBS | Activity | Duration | Start | Finish | Predecessors | Complete | Planned start | Planned finish | Resources | 01- Network |
| --- | --- | --- | --- | --- | --- | --- | --- | --- | --- | --- | --- |
|  | 5 | **Termination and Testing Works** |  | 2026-01-06 | 2026-01-12 |  |  |  |  |  |  |
| ENG-MT-SL-TF-S-100 |  | Material Submittal for Fuse Boxes of Street Lighting Network | 7d | 2026-01-06 A | 2026-01-12 A | MS-CS-SL SS | 100% | 2026-01-06 | 2026-01-13 | physical units [59.54 h] | MA |
| ENG-MT-SL-TF-S-110 |  | Material Submittal for Cable Lugs of Street Lighting Network | 7d | 2026-01-06 A | 2026-01-12 A | MS-CS-SL SS | 100% | 2026-01-06 | 2026-01-13 | physical units [59.54 h] | MA |
|  | 4 | **Earthing System Works** |  | 2026-01-06 | 2026-01-12 |  |  |  |  |  |  |
| ENG-MT-SL-ES-S-100 |  | Material Submittal for Lighting Earthing of Street Lighting Network | 7d | 2026-01-06 A | 2026-01-12 A | MS-CS-SL SS | 100% | 2026-01-06 | 2026-01-13 | physical units [59.54 h] | MA |
|  | MA | **Approval of Material** |  | 2026-01-13 | 2026-01-19 |  |  |  |  |  |  |
|  | 1 | **Cabling Works** |  | 2026-01-13 | 2026-01-19 |  |  |  |  |  |  |
| ENG-MT-SL-ML-A-100 |  | Material Approval for Lighting Cables of Street Lighting Network | 6d | 2026-01-13 A | 2026-01-19 A | ENG-MT-SL-ML-S-100 | 100% |  |  | Lighting poles with 1 arm, height of (12) meters, including the power distribution box, cables, and RCC foundation.; Lighting poles with 2 arms, height of (12) meters, including the power distribution box, cables, and RCC foundation.; physical units [51.03 h] | MA |
|  | 2 | **Lighting Poles Works** |  | 2026-01-13 | 2026-01-19 |  |  |  |  |  |  |
| ENG-MT-SL-A-100 |  | Material Approval for Lighting Poles Concrete Foundations of Street Lighting Network | 6d | 2026-01-13 A | 2026-01-19 A | ENG-MT-SL-S-100 | 100% |  |  | Lighting poles with 1 arm, height of (12) meters, including the power distribution box, cables, and RCC foundation.; Lighting poles with 2 arms, height of (12) meters, including the power distribution box, cables, and RCC foundation.; physical units [51.03 h] | MA |
| ENG-MT-SL-A-110 |  | Material Approval for Lighting Poles of Street Lighting Network | 6d | 2026-01-13 A | 2026-01-19 A | ENG-MT-SL-S-110 | 100% |  |  | Lighting poles with 1 arm, height of (12) meters, including the power distribution box, cables, and RCC foundation.; Lighting poles with 2 arms, height of (12) meters, including the power distribution box, cables, and RCC foundation.; physical units [51.03 h] | MA |
| ENG-MT-SL-A-120 |  | Material Approval for Lighting Fixtures of Street Lighting Network | 6d | 2026-01-13 A | 2026-01-19 A | ENG-MT-SL-S-120 | 100% |  |  | Street Lighting( LED) Luminaire of Output ? 20,965 lumen complete with control gear and lamp, (129.1) WATT.; physical units [51.03 h] | MA |
|  | 3 | **Distribution Panel Board** |  | 2026-01-13 | 2026-01-19 |  |  |  |  |  |  |
| ENG-MT-SL-DB-A-100 |  | Material Approval for Distrubution Panel Boards of Street Lighting Network | 6d | 2026-01-13 A | 2026-01-19 A | ENG-MT-SL-DB-S-100 | 100% |  |  | Street Lighting panels LCP (01); physical units [51.03 h] | MA |
|  | 4 | **Earthing System Works** |  | 2026-01-13 | 2026-01-19 |  |  |  |  |  |  |
| ENG-MT-SL-ES-A-100 |  | Material Approval for Lighting Earthing of Street Lighting Network | 6d | 2026-01-13 A | 2026-01-19 A | ENG-MT-SL-ES-S-100 | 100% |  |  | Including earthing of lighting poles, masts, feeder pillars, unit substations and LV feeders.; physical units [51.03 h] | MA |
|  | 5 | **Termination and Testing Works** |  | 2026-01-13 | 2026-01-19 |  |  |  |  |  |  |
| ENG-MT-SL-TF-A-100 |  | Material Approval for Fuse Boxes of Street Lighting Network | 6d | 2026-01-13 A | 2026-01-19 A | ENG-MT-SL-TF-S-100 | 100% |  |  | Lighting poles with 1 arm, height of (12) meters, including the power distribution box, cables, and RCC foundation.; Lighting poles with 2 arms, height of (12) meters, including the power distribution box, cables, and RCC foundation.; physical units [51.03 h] | MA |
| ENG-MT-SL-TF-A-110 |  | Material Approval for Cable Lugs of Street Lighting Network | 6d | 2026-01-13 A | 2026-01-19 A | ENG-MT-SL-TF-S-110 | 100% |  |  | Lighting poles with 1 arm, height of (12) meters, including the power distribution box, cables, and RCC foundation.; Lighting poles with 2 arms, height of (12) meters, including the power distribution box, cables, and RCC foundation.; physical units [51.03 h] | MA |
|  | 8 | **Telecom and Light Current Networks** |  | 2026-01-06 | 2026-01-19 |  |  |  |  |  |  |
|  | MS | **Submission of Material** |  | 2026-01-06 | 2026-01-12 |  |  |  |  |  |  |
|  | 1 | **Ducts Works** |  | 2026-01-06 | 2026-01-12 |  |  |  |  |  |  |
| ENG-MT-TE-S-100 |  | Material Submittal for Ducts of Telecom Network | 7d | 2026-01-06 A | 2026-01-12 A | MS-CS-TE SS | 100% | 2026-01-06 | 2026-01-13 | physical units [59.54 h] | MA |
|  | 3 | **Manholes Works** |  | 2026-01-06 | 2026-01-12 |  |  |  |  |  |  |
| ENG-MT-TE-S-110 |  | Material Submittal for Manholes of Telecom Network | 7d | 2026-01-06 A | 2026-01-12 A | MS-CS-TE SS | 100% | 2026-01-06 | 2026-01-13 | physical units [59.54 h] | MA |

| ID | WBS | Activity | Duration | Start | Finish | Predecessors | Complete | Planned start | Planned finish | Resources | 01- Network |
| --- | --- | --- | --- | --- | --- | --- | --- | --- | --- | --- | --- |
|  | 2 | **CCTV, Telephone, MSN, ACs System Works** |  | 2026-01-06 | 2026-01-12 |  |  |  |  |  |  |
| ENG-MT-CTV-S-100 |  | Material Submittal for Materials of CCTV, Telephone, MSN, and Access Control Systems | 7d | 2026-01-06 A | 2026-01-12 A | MS-CS-TE SS | 100% | 2026-01-06 | 2026-01-13 | physical units [59.54 h] | MA |
|  | MA | **Approval of Material** |  | 2026-01-13 | 2026-01-19 |  |  |  |  |  |  |
|  | 1 | **Ducts Works** |  | 2026-01-13 | 2026-01-19 |  |  |  |  |  |  |
| ENG-MT-TE-A-100 |  | Material Approval for Ducts of Telecom Network | 6d | 2026-01-13 A | 2026-01-19 A | ENG-MT-TE-S-100 | 100% |  |  | 2-ways ducts, 32mm diameter; 2x3-ways ducts, 50mm diameter; 8-ways ducts, 6 x 160mm & 2 x 100mm; 2 PVC ducts 150x200 mm (60mm diameter); 4 PVC ducts 600x150 mm (60mm diameter); 8 PVC ducts 1000x300 mm (60mm diameter); 6 PVC ducts 600x800 mm (60mm diameter); physical units [51.03 h] | MA |
|  | 3 | **Manholes Works** |  | 2026-01-13 | 2026-01-19 |  |  |  |  |  |  |
| ENG-MT-TE-A-110 |  | Material Approval for Manholes of Telecom Network | 6d | 2026-01-13 A | 2026-01-19 A | ENG-MT-TE-S-110 | 100% |  |  | Manhole Type 2 (1600 x 1600 x 2000); Manhole Type 3 (1200 x 1200 x 2000); Manhole Type 1 (800 x 600 x 1200); physical units [51.03 h] | MA |
|  | 2 | **CCTV, Telephone, MSN, ACs System Works** |  | 2026-01-13 | 2026-01-19 |  |  |  |  |  |  |
| ENG-MT-CTV-A-100 |  | Material Approval for for Materials of CCTV, Telephone, MSN, and Access Control Systems | 6d | 2026-01-13 A | 2026-01-19 A | ENG-MT-CTV-S-100 | 100% |  |  | NVR Server with RAID (5, 6 or 10) to record all cameras storage 80TB with all hardware / software / licenses etc.; VMS Server with RAID (5, 6 or 10) complete Hardware / Software with one Color Laser Printer and all associated accessories for central management.; Licenses for Cameras, Workstations and Keyboards; Work Station (MMI with two monitors each, for Monitoring for CCTV & ACS); Keyboard with joystick for CCTV with all accessories as per specification; Pole mounted IP( PoE) Fixed camera, 5MP,IP 66, IR illumination, 3-8mm varifocal, auto iris lens type; Wall mounted IP( PoE) Fixed camera, 5MP,IP 66, IR illumination, 3-8mm varifocal, auto iris lens type; 5MP Dome camera ceiling Mounted IP (PoE) indoor; 5MP PTZ Multi Sensor Camera IP(PoE) 360 Degree View Outdoor with accessories (IP 66); 8 Port Industrial PoE Switch 10/100BaseT (0 deg to +70 deg. Celsius); Filed Equipment cabinet (FEC), with fan and ventilation, NEMEX 4X ,door, minimum size (600x600x400mm), the cabinet/enclosure includes industrial switch and UPS.; IP Phone Communication server (hot standby) 50 Port equipped, Gateway, Gatekeeper, H.323, SIP, redundant Power etc.; IP Phone Voice gateway; Voice IP Phone; NMS Server for IP phone and NETWORK Elements; NMS Workstation; Firm Ware, software & licenses; Data Cable; Power Cable; Layer 3, 24 Port non-PoE switch10/1000BaseT/LX (-40 deg to +70 deg. Celsius), stack module and associated accessories for utility Telecom Server room; Layer 2, 24 Port non-PoE switch10/1000BaseT (-40 deg to +70 deg. Celsius), stack module and associated accessories for utility Telecom Server and Security Guard house room; Network Management System Server; Network Management System workstation; 42U rack dimension (W x H x L) 800 x 2000 x 1000 mm; 12U rack dimension (W x H x L) 600 x 625 x 600 mm; 06C Optical Fiber SM; 48C Optical Fiber SM; 48 Core Splice Closure; Optical fiber patch cord 5m; Data Cable (STP CAT 6A); 3C Power Cable armored 1.5mm2; 3C Power Cable armored 2.5 mm2; UTP CAT6A Patch Cord 1m/3m/5m; Access Control Unit; Access Card Reader; Magnetic Lock; Break Glass; Exit Push button; Door Sensor; Biometrics Reader; Smart Card Printer; Card Issue Work Station; Photographic Camera with stand; Interface modules with CCTV, Fire and other systems; 1-ways ducts, 6 x 50mm diameter; 6 PVC ducts 150x200 mm (60mm diameter); physical units [51.03 h] | MA |
|  | 10 | **Road Works** |  | 2026-01-06 | 2026-01-31 |  |  |  |  |  |  |
|  | MS | **Submission of Material** |  | 2026-01-06 | 2026-01-24 |  |  |  |  |  |  |
|  | 1 | **General Road Works** |  | 2026-01-18 | 2026-01-24 |  |  |  |  |  |  |
| ENG-MT-RD-S-100 |  | Material Submittal for Subgrade of Road Works | 7d | 2026-01-18 A | 2026-01-24 A | ENG-SH-RD-A-100, MS-CS-RD SS | 100% | 2026-01-18 | 2026-01-25 | physical units [59.54 h] | MA |
| ENG-MT-RD-S-110 |  | Material Submittal for Aggregate Base Course of Road Works | 7d | 2026-01-18 A | 2026-01-24 A | ENG-SH-RD-A-100, MS-CS-RD SS | 100% | 2026-01-18 | 2026-01-25 | physical units [59.54 h] | MA |
| ENG-MT-RD-S-120 |  | Material Submittal for Prime Coat of Road Works | 7d | 2026-01-18 A | 2026-01-24 A | ENG-SH-RD-A-100, MS-CS-RD SS | 100% | 2026-01-18 | 2026-01-25 | physical units [59.54 h] | MA |
| ENG-MT-RD-S-130 |  | Material Submittal for Asphaltic Base Course Layer of Road Works | 7d | 2026-01-18 A | 2026-01-24 A | ENG-SH-RD-A-100, MS-CS-RD SS | 100% | 2026-01-18 | 2026-01-25 | physical units [59.54 h] | MA |
| ENG-MT-RD-S-160 |  | Material Submittal for Asphaltic Wearing Course Layer for Roads Network | 7d | 2026-01-18 A | 2026-01-24 A | ENG-SH-RD-A-100, MS-CS-RD SS | 100% | 2026-01-18 | 2026-01-25 | physical units [59.54 h] | MA |
| ENG-MT-RD-S-170 |  | Material Submittal for Tack Coat Layer for Roads Network | 7d | 2026-01-18 A | 2026-01-24 A | ENG-SH-RD-A-100, MS-CS-RD SS | 100% | 2026-01-18 | 2026-01-25 | physical units [59.54 h] | MA |
|  | 10 | **Landscape Works** |  | 2026-01-06 | 2026-01-12 |  |  |  |  |  |  |
| ENG-MT-RD-S-140 |  | Material Submittal for Interlock Tiles of Landscaping | 7d | 2026-01-06 A | 2026-01-12 A | MS-CS-RD SS | 100% | 2026-01-06 | 2026-01-13 | physical units [59.54 h] | MA |
| ENG-MT-RD-S-150 |  | Material Submittal for Curbstones of Landscaping | 7d | 2026-01-06 A | 2026-01-12 A | MS-CS-RD SS | 100% | 2026-01-06 | 2026-01-13 | physical units [59.54 h] | MA |
|  | 11 | **Traffic Signs Boards and Roads Marking** |  | 2026-01-06 | 2026-01-12 |  |  |  |  |  |  |
| ENG-MT-TS-S-100 |  | Material Submittal for Traffic Signs Boards of Road Works | 7d | 2026-01-06 A | 2026-01-12 A | MS-CS-RD SS | 100% | 2026-01-06 | 2026-01-13 | physical units [59.54 h] | MA |
| ENG-MT-TS-S-110 |  | Material Submittal for Road Markings of Road Works | 7d | 2026-01-06 A | 2026-01-12 A | MS-CS-RD SS | 100% | 2026-01-06 | 2026-01-13 | physical units [59.54 h] | MA |

| ID | WBS | Activity | Duration | Start | Finish | Predecessors | Complete | Planned start | Planned finish | Resources | 01- Network |
| --- | --- | --- | --- | --- | --- | --- | --- | --- | --- | --- | --- |
|  | NA | **Approval of Material** |  | 2026-01-13 | 2026-01-31 |  |  |  |  |  |  |
|  | 1 | **General Road Works** |  | 2026-01-25 | 2026-01-31 |  |  |  |  |  |  |
| ENG-MT-RD-A-100 |  | Material Approval for Subgrade of Road Works | 6d | 2026-01-25 A | 2026-01-31 A | ENG-MT-RD-S-100 | 100% |  |  | Excavations (including Roads , Plots and Pond); Embankments to the Site and Roads (including Roads , Plots and Pond); Subgrade; physical units [51.03 h] | MA |
| ENG-MT-RD-A-110 |  | Material Approval for Aggregate Base Course of Road Works | 6d | 2026-01-25 A | 2026-01-31 A | ENG-MT-RD-S-110 | 100% |  |  | Aggregate base course; Bituminous base course (Grading I - Class A), including Prime Coat (MC1); Bituminous concrete wearing course, (Grading I - Class A), including tack coat (RC2); physical units [51.03 h] | MA |
| ENG-MT-RD-A-120 |  | Material Approval for Prime Coat of Road Works | 6d | 2026-01-25 A | 2026-01-31 A | ENG-MT-RD-S-120 | 100% |  |  | Bituminous base course (Grading I - Class A), including Prime Coat (MC1); physical units [51.03 h] | MA |
| ENG-MT-RD-A-130 |  | Material Approval for Asphaltic Base Course Layer of Road Works | 7d | 2026-01-25 A | 2026-01-31 A | ENG-MT-RD-S-130 | 100% | 2026-01-25 | 2026-02-01 | physical units [59.54 h] | MA |
| ENG-MT-RD-A-160 |  | Material Approval for Asphaltic Wearing Course Layer for Roads Network | 7d | 2026-01-25 A | 2026-01-31 A | ENG-MT-RD-S-160 | 100% | 2026-01-25 | 2026-02-01 | physical units [59.54 h] | MA |
| ENG-MT-RD-A-170 |  | Material Approval for Tack Coat Layer for Roads Network | 6d | 2026-01-25 A | 2026-01-31 A | ENG-MT-RD-S-170 | 100% |  |  | Bituminous concrete wearing course, (Grading I - Class A), including tack coat (RC2); physical units [51.03 h] | MA |
|  | 2 | **Landscape Works** |  | 2026-01-13 | 2026-01-19 |  |  |  |  |  |  |
| ENG-MT-RD-A-140 |  | Material Approval of Interlock Tiles for Landscaping | 6d | 2026-01-13 A | 2026-01-19 A | ENG-MT-RD-S-140 | 100% |  |  | 60mm thick; 80mm thick; physical units [51.03 h] | MA |
| ENG-MT-RD-A-150 |  | Material Approval of Curbstones for Landscaping | 6d | 2026-01-13 A | 2026-01-19 A | ENG-MT-RD-S-150 | 100% |  |  | Precast Concrete Curbstone 150X300X900 Type (K1-A); Precast Concrete Curbstone 100X200X500 Type (K4); Precast Concrete Curbstone 150X300X500 Type (K1-B); Precast Concrete Curbstone Type (K1-C); Flush Kerb Type (D); physical units [51.03 h] | MA |
|  | 3 | **Traffic Signs Boards and Roads Marking** |  | 2026-01-13 | 2026-01-19 |  |  |  |  |  |  |
| ENG-MT-TS-A-100 |  | Material Approval for Traffic Signs Boards of Road Works | 6d | 2026-01-13 A | 2026-01-19 A | ENG-MT-TS-S-100 | 100% |  |  | Traffic signs, ground mounted, Sheet Aluminum, (breakaway) Single post IPE, with all accessories; physical units [51.03 h] | MA |
| ENG-MT-TS-A-110 |  | Material Approval for Road Markings of Road Works | 6d | 2026-01-13 A | 2026-01-19 A | ENG-MT-TS-S-110 | 100% |  |  | Retroreflective Thermoplastic White Traffic lines; Retroreflective Thermoplastic Yellow, Traffic lines; Precast Concrete Blister Warning Tactile Paver Brown Finish 300*300*60mm; physical units [51.03 h] | MA |
|  | 6 | **Softscape and Planting Works** |  | 2026-01-06 | 2026-01-19 |  |  |  |  |  |  |
|  | 1 | **Submission of Material** |  | 2026-01-06 | 2026-01-12 |  |  |  |  |  |  |
| ENG-MT-IR-ML-S-140 |  | Material Submittal for Softscape and Planting Works | 7d | 2026-01-06 A | 2026-01-12 A | MS-CS-RD SS | 100% | 2026-01-06 | 2026-01-13 | physical units [59.54 h] | MA |
| ENG-MT-IR-ML-S-150 |  | Material Submittal for Site Furnishings (Seating Bench,Stone Boulders and Gravel) | 7d | 2026-01-06 A | 2026-01-12 A | MS-CS-RD SS | 100% | 2026-01-06 | 2026-01-13 | physical units [59.54 h] | MA |
|  | 2 | **Approval of Material** |  | 2026-01-13 | 2026-01-19 |  |  |  |  |  |  |
| ENG-MT-IR-ML-A-140 |  | Material Approval for Softscape and Planting Works | 6d | 2026-01-13 A | 2026-01-19 A | ENG-MT-IR-ML-S-140 | 100% |  |  | Neem Tree, T01 Tree; Cassia Glauca Tree, T02 Tree; Ponciana Tree, T03 Tree; Dodonaea Viscosa, S01 Shrubs 400-500mm, 4plant/m2; Vitex Angus-Cactus, S02 Shrubs 400-500mm, 5plant/m2; Pennisetum Rubrum , S03 Shrubs 400-500mm, 5plant/m2; sesuvium portulacastrum green carpet, GC01 Ground Cover; Catharanthus Roseus 150-200mm, GC02 Ground Cover; physical units [51.03 h] | MA |
| ENG-MT-IR-ML-A-150 |  | Material Approval for Site Furnishings (Seating Bench,Stone Boulders and Gravel) | 6d | 2026-01-13 A | 2026-01-19 A | ENG-MT-IR-ML-S-150 | 100% |  |  | Seating Bench; Riyadh Stone Boulders 450mm thick; Gravel Mulch 150mm Beige; Gravel Mulch 150mm White; Gravel Ponds Bed - MARL MIX 500-600mm; Trash/ Recycle Bins; physical units [51.03 h] | MA |
|  | 1 | **Superstructure Works** |  | 2026-01-06 | 2026-06-13 |  |  |  |  |  |  |
|  | SL | **Water Pump Station** |  | 2026-01-06 | 2026-01-19 |  |  |  |  |  |  |
|  | 1 | **Submission of Material** |  | 2026-01-06 | 2026-01-12 |  |  |  |  |  |  |
| ENG-MT-SLS-CV-S-100 |  | Material Submittal for Works for Water Pump Station | 7d | 2026-01-06 A | 2026-01-12 A | MS-CS-MV10 FF, MS-CS-MV10 SS | 100% | 2026-01-06 | 2026-01-13 | physical units [59.54 h] | MA |

| ID | WBS | Activity | Duration | Start | Finish | Predecessors | Complete | Planned start | Planned finish | Resources | 01- Network | 13 BUILDINGS |
| --- | --- | --- | --- | --- | --- | --- | --- | --- | --- | --- | --- | --- |
|  | 2 | **Approval of Material** |  | 2026-01-13 | 2026-01-19 |  |  |  |  |  |  |  |
| ENG-MT-SLS-CV-A-110 |  | Material Approval for Works for Water Pump Station | 6d | 2026-01-13 A | 2026-01-19 A | ENG-MT-SLS-CV-S-100 | 100% |  |  | 100 mm thickness lean concrete under the foundation; Foundation; Grade Beams; Slab on grade; Beams; Columns; Slabs; Lightweight Concrete Roof insulation as per Architect's specification; Hollow Concrete masonry unit, 150 mm thick wall for internal block; Insulated brickwork. with expanded polystyrene 200mm thick for External block; Hollow Concrete masonry unit, 300 mm thick wall for External block; 2 perpendicular layers of cold bitumen coats; 2 layer of 4mm HDPE membrane, 2 perpendicular layers cold bitumen coats; 1 layer EPOXY Paint 300 micron; Membrane fully bonded to prime deck and upstand; Geotextile Filter membrane uv resistance; 85mm thick thermal insulation; 1.5mm thick epdm waterproofing membrane; D1 - 1100 mm width x 2200 mm height; D4 - 1800 mm width x 3000 mm height; 1000 mm width x 2400 mm high (L1); Supply and install External plastering to walls and columns min. 15mm thick with cement mortar of specified grade including galvanized mesh, corner beads, angle beads, CE bonds to rough and smooth plaster complete the work as per drawing & specification.; Supply and install 2 coats of weatherproof paint at walls including one prime coat and two coats and putty to give smooth Surface as a base for paint including fiberglass tape to joints and all other accessories as per manufacturers approved specification; Supply and install internal plastering to walls and columns min. 15mm thick with cement mortar of specified grade including galvanized mesh, corner beads, angle beads, CE bonds to rough and smooth plaster complete the work as per drawing & specification.; Supply and install 2 coats of epoxy paint at walls including one prime coat and two coats and putty to give smooth Surface as a base for paint including fiberglass tape to joints and all other accessories as per manufacturers approved specification; Supply and install 300*300mm glazed ceramic wall tiles on cement mortar and including rough and smooth plaster, galvanized mesh, corner beads, angle beads, CE bonds; Acid Proof Tiles; Supply and install 600*600mm porcelain tiles with approved quality on 30 mm mortar including sand fill material as approved by the Client; Supply and install 12.5mm thk, gypsum board suspended ceiling including suspension system, paints as required specification and material as approved by the Client including frames supports, access openings and all other accessories to complete as shown in; 4.5 KG CO2 Type Fire Extinguishers; 6 KG ABC Type Fire Extinguishers; 15 mm dia.; 25 mm dia.; 32 mm dia.; 40 mm dia.; 80 mm dia.; 200 mm dia.; 250 mm dia.; 20 mm; 25 mm; 32 mm; 40 mm; 50 mm; 100 mm; 150 mm; 200 mm; 250 mm; Altitude control valve assembly, size 200 mm; Supply, install, connection, testing and commssionigs horizontal bladder type pressure tank with capacity 1500 liter according to manufacturer's detail and specification - PS-PT-1; Supply, install, connection, testing and commssionigs horizontal bladder type pressure tank with capacity 300 liter according to manufacturer's detail and specification - PS-PT-2; Chemical DosingTank (CDT) 6000 liters capacity polytheylene tank With pump assembly.; Actual capacity 1.5 Ton; Actual capacity 2.0 Ton; Air Flow 280 l/s @ 150 pa; Air Flow 3200 l/s @ 100 pa; Air Flow 110 l/s @ 50 pa; Air Flow 70 l/s @ 50 pa; Air Flow 35 l/s @ 35 pa; Air Flow 105 l/s @ 50 pa; Air Flow 180 l/s @ 0.01 pa; Galvanized sheet metal ducts; Supply Liner Slot diffuser 3 slots 1 inch; Return Liner Slot diffuser 3 slots 1 inch; Exhaust Grill 150mm x 150mm; Sand trap louver 2400mm x 1000mm; Sound attenuator size 1050 x 650 x 1000 m; Pump Set for FF Supply (FP01.FP02); Pump Set for Domestic Supply (BP01 / BP02); Pump Set for Irrigation Supply (IRR01 / IRR02); Pump Set for Drainage System; Pump Set for SW Force Main (1W+1S); acoustical tiles suspended ceiling 600x600mm concealed metal; physical units [51.03 h] | MA | LIFT |
|  | SL111 | **Storage Tank (TSE)** |  | 2026-01-06 | 2026-01-19 |  |  |  |  |  |  |  |
|  | 1 | **Submission of Material** |  | 2026-01-06 | 2026-01-12 |  |  |  |  |  |  |  |
| ENG-MT-TSE-CV-S-130 |  | Material Submittal for Works for Storage Tank (TSE) | 7d | 2026-01-06 A | 2026-01-12 A | MS-CS-TE10 FF, MS-CS-TE10 SS | 100% | 2026-01-06 | 2026-01-13 | physical units [59.54 h] | MA |  |
|  | 2 | **Approval of Material** |  | 2026-01-13 | 2026-01-19 |  |  |  |  |  |  |  |
| ENG-MT-TSE-CV-A-140 |  | Material Approval for Works for Storage Tank (TSE) | 6d | 2026-01-13 A | 2026-01-19 A | ENG-MT-TSE-CV-S-130 | 100% |  |  | 100 mm thickness lean concrete under the foundation; Foundation; 2 perpendicular layers of cold bitumen coats; 2 layer of 4mm HDPE membrane, 2 perpendicular layers cold bitumen coats; 1 layer EPOXY Paint 300 micron; Membrane fully bonded to prime deck and upstand; Geotextile Filter membrane uv resistance; 85mm thick thermal insulation; 1.5mm thick epdm waterproofing membrane; physical units [51.03 h] | MA |  |
|  | SL1112 | **Control Room** |  | 2026-02-03 | 2026-02-10 |  |  |  |  |  |  |  |
|  | 1 | **Submission of Material** |  | 2026-02-03 | 2026-02-04 |  |  |  |  |  |  |  |
| ENG-MT-TSE-CV-S-140 |  | Material Submittal for Works for Control Room | 3d | 2026-02-03 A | 2026-02-04 A | MS-CS-TE20 SS | 100% | 2026-02-03 | 2026-02-05 | physical units [25.52 h] | MA |  |
|  | 2 | **Approval of Material** |  | 2026-02-04 | 2026-02-10 |  |  |  |  |  |  |  |
| ENG-MT-TSE-CV-A-150 |  | Material Approval for Works for Control Room | 6d | 2026-02-04 A | 2026-02-10 A | ENG-MT-TSE-CV-S-140 | 100% |  |  | 100 mm thickness lean concrete under the foundation; Foundation; Grade Beams; Beams; Columns; Slabs; Lightweight Concrete Roof insulation as per Architect's specification; Hollow Concrete masonry unit, 100 mm thick wall for internal block; Hollow Concrete masonry unit, 150 mm thick wall for internal block; Insulated brickwork. with expanded polystyrene 200mm thick for External block; Hollow Concrete masonry unit, 300 mm thick wall for External block; 2 perpendicular layers of cold bitumen coats; 2 layer of 4mm HDPE membrane, 2 perpendicular layers cold bitumen coats; 1 layer EPOXY Paint 300 micron; Membrane fully bonded to prime deck and upstand; Geotextile Filter membrane uv resistance; 85mm thick thermal insulation; 1.5mm thick epdm waterproofing membrane; D1 - 1100 mm width x 2200 mm height; D2 - 1070 mm width x 2225 mm height; D3 - 1200 mm width x 3000 mm height; D4 - 1800 mm width x 3000 mm height; Roller Shuter - 3000mm width x 4000mm height; D1' 1900mm width x 2950mm height; D2' 1200mm width x 2150mm height; D3' 800mm width x 2050mm height; D4' 1700mm width x 2050mm height; 1500 mm width x 1200 mm high (W01); 1200 mm width x 1200 mm high (W02); 1000 mm width x 2400 mm high (L1); Supply and install External plastering to walls and columns min. 15mm thick with cement mortar of specified grade including galvanized mesh, corner beads, angle beads, CE bonds to rough and smooth plaster complete the work as per drawing & specification.; Supply and install 2 coats of weatherproof paint at walls including one prime coat and two coats and putty to give smooth Surface as a base for paint including fiberglass tape to joints and all other accessories as per manufacturers approved specification; Supply and install internal plastering to walls and columns min. 15mm thick with cement mortar of specified grade including galvanized mesh, corner beads, angle beads, CE bonds to rough and smooth plaster complete the work as per drawing & specification.; Supply and install 2 coats of epoxy paint at walls including one prime coat and two coats and putty to give smooth Surface as a base for paint including fiberglass tape to joints and all other accessories as per manufacturers approved specification; Supply and install 300*300mm glazed ceramic wall tiles on cement mortar and including rough and smooth plaster, galvanized mesh, corner beads, angle beads, CE bonds; Acid Proof Tiles; Supply and install 600*600mm porcelain tiles with approved quality on 30 mm mortar including sand fill material as approved by the Client; Supply and install 12.5mm thk, gypsum board suspended ceiling including suspension system, paints as required specification and material as approved by the Client including frames supports, access openings and all other accessories to complete as shown in; 4.5 KG CO2 Type Fire Extinguishers; 6 KG ABC Type Fire Extinguishers; 15 mm dia.; 25 mm dia.; 32 mm dia.; 40 mm dia.; 80 mm dia.; 200 mm dia.; 250 mm dia.; Supply and installation of western water closet, flush tank type, heavy duty, one piece SASO certified, approval of client, dimesion not less than 40 cm width, 68 cm length including all other accessories as per drawings and specification; Supply and installation of urinal, heavy duty, one piece SASO certified, approval of client, including all other accessories as per drawings and specification; Supply and installation of Bib tap with Perenial Hose (BPH) with stainless steel flexible hose and cast brass chromeplated hand including all other accessories to complete as per drawing and specification.; Supply, installation, testing and commissioning of Lavatory / wash basin with counter for toilets, built in soap dispenser, mixer, single lever arm including all accessories as per drawings and specification and to the approval of the client; Provide and install paper towel dispenser, surface mounted, satin finish stainless steel as per approved sample including accessories.; Provide and install mirror as per approved sample including frames, backing and all accessories to complete.; Provide and install towel ring, surface mounted, satin finish stainless steel as per approved sample including accessories.; Hose Bib; Valve Chamber; Retarding Chamber; Inspection Chamber; Neutralization pit 1000x1000mm; 25mm diameter; 32mm diameter; 40mm diameter; 50mm diameter; 75mm diameter; 80mm diameter; 100mm diameter; 110mm diameter; 15mm diameter; 20mm diameter; 150mm diameter; 200mm diameter; 250mm diameter; 13mm diameter; Gully Trap; Floor drain 75mm; Floor cleanout 110mm; Roof drain; GRP water tanks capacity of each 1000 liter complete with all fittings, all valves and concrete pad; Water Heater 30ltr; Actual capacity 1.0 Ton; Actual capacity 1.5 Ton; Supply and install flexible duct with insulation; size 8 inch dia.; Supply and install flexible duct with insulation; size 10 inch dia.; Package Unit 57.4 kW "thermal"; Variable Air Volume (VAV 01); Variable Air Volume (VAV 02); Variable Air Volume (VAV 03); Variable Air Volume (VAV 04); Variable Air Volume (VAV 05); Variable Air Volume (VAV 06); Galvanized sheet metal ducts; Supply Liner Slot diffuser 3 slots 1 inch; Return Liner Slot diffuser 3 slots 1 inch; Exhaust Grill 150mm x 150mm; Exhast Air fan 515 l/s @ 150 pa; Exhast Air fan 3200 l/s @ 100 pa; Sand trap louver 2400mm x 1000mm; Sound attenuator size 1050 x 650 x 1000 m; Fire suppression system FM200 57 kg fill capacity consists of 2 cylinders, duty + standby, complete with all required mechanical, electrical , and control items to install, test, and operate the system.; Fire suppression system NOVEC 1230 134.1 kg fill capacity consists of 2 cylinders, duty + standby, complete with all required mechanical, electrical , and control items to install, test, and operate the system.; Fire suppression system NOVEC 1230 29.2 kg fill capacity consists of 2 cylinders, duty + standby, complete with all required mechanical, electrical , and control items to install, test, and operate the system.; Fire suppression system NOVEC 1230 53.5 kg fill capacity consists of 2 cylinders, duty + standby, complete with all required mechanical, electrical , and control items to install, test, and operate the system.; Fire suppression system NOVEC 1230 82.3 kg fill capacity consists of 2 cylinders, duty + standby, complete with all required mechanical, electrical , and control items to install, test, and operate the system.; Fire suppression system NOVEC 1230 42.5 kg fill capacity consists of 2 cylinders, duty + standby, complete with all required mechanical, electrical , and control items to install, test, and operate the system.; Supply and install steel ladder with cage at pump room for as per drawings and specification.; Overhead Travelling Crane; lifting capacity 1.50 ton manual type all to manufacturer's detail and specifications. - PS-OC-1; Hot dipped Galvanized steel Trench Grating; Hot dipped Galvanized steel Channel Cover Plate; Steel Frame and Cover 1200 x 1200; Vent Cowl (Standard Size); Steel Handrail of 1.2m height; 30W LED linear Pendant lighting; 30W LED Emergency linear Pendant lighting; 47W LED linear Pendant lighting; 47W LED Emergency linear Pendant lighting; 13W recess mounted LED down light fitting; 13W recess emergency mounted LED down light fitting with 1.5 Hr Battery; 10.4W LED Exit light with 1.5 Hr Battery; Distribution board (MDB-PR-01); Distribution board (LPDB-PR-01); Distribution board (MDB-CB-01); Distribution board (LPDB-CR-01); 13A,1? 230V Twin socket outlet with switch; 13A,1? 230V Industrial socket outlet with switch; 13A, Twin Socket outlet, Weather Proof; 400A, 3P Disconnect switch; 30A, 2P AC Disconnect Switch; 30A, 3P AC Disconnect Switch; 60A, 3P AC Disconnect Switch; 20A Duplex Receptacle Floor Mounted; Single gang Lighting switch; Double gang Lighting switch; 2way Single gang Lighting switch; Cable Tray 300 mm X 100 mm; 4CX6 Cu. XLPE FRLSZH Cable; 4CX10 Cu. XLPE FRLSZH Cable; 4CX16 Cu. XLPE FRLSZH Cable; 4CX25 Cu. XLPE FRLSZH Cable; 4CX35 Cu. XLPE FRLSZH Cable; 4CX185 Cu. XLPE FRLSZH Cable; 120mm2 Tinned copper wire; Grounding rod 20mmX3m; Grounding rod with Pit 20mmX3m; Earthing Bar; Cu earth strip 25X4 mm; 1.5m Air terminal; 4mm2 Cu./FRLSZH Cable; 6mm2 Cu./FRLSZH Cable; 10mm2 Cu./FRLSZH Cable; 16mm2 Cu./FRLSZH Cable; 95mm2 Cu./FRLSZH Cable; 120mm2 Cu./FRLSZH Cable; 30KVA, 400V, 3PH, 60Hz UPS; CB-UPS-01 panel; Supply, install and connection of a SCADA server cum workstation complete with network rack, network switch, sensors, printer, armoured cables with cable tray & conduits, level transmitter, liquid flow meter, quality sensor (COD,BOD,pH), pressure transmit; Fire Alarm Control panel with fire alarm zoning with Mimic panel with fire alarm zoning; Supply, install to site and installation of the Aspirating Smoke Detector complete with accessories and pipes; Supply, install to site and installation of the addressable manual call point with operation safety glass breaking and pushbutton; Supply, install to site and installation of the photoelectric smoke detector with base; Supply, install to site and installation of the heat detector with base; Supply, install to site and installation of multi criteria sensors with base; Supply, install to site and installation of Hydrogen detector; Supply, install to site and installation of Duct detector; Sounder With Beacon; Remote LED Indicator; Single Channel Interface Module; Addressable Control module for Sounders; Addressable relay module for interface; Addressable monitor module for interface; Supply, install to site and installation Fire loop cable; Supply, install to site and installation of power cable; Fire Fighter’s Telephone Centre; Fireman’s Telephone Jack; Voice Command Center; DACT (Auto - Dailer) for 24x7 Civil Defence; Transmission Communication cable - Fiber Optics; Transmission Communication cable - Ethernet Cable; Supply, install to site and installation of power supply system for fire alarm control panel; acoustical tiles suspended ceiling 600x600mm concealed metal; physical units [51.03 h] | MA |  |
|  | SL1111 | **Sewage Pump Stations** |  | 2026-01-06 | 2026-02-16 |  |  |  |  |  |  |  |
|  | 1 | **Submission of Material** |  | 2026-01-06 | 2026-01-12 |  |  |  |  |  |  |  |
| ENG-MT-PS-CV-S-140 |  | Material Submittal for Works of Sewage Pump Station | 7d | 2026-01-06 A | 2026-01-12 A | MS-CS-IR10 SS | 100% | 2026-01-06 | 2026-01-13 | physical units [59.54 h] | MA |  |
|  | 2 | **Approval of Material** |  | 2026-02-11 | 2026-02-16 |  |  |  |  |  |  |  |
| ENG-MT-PS-CV-A-150 |  | Material Approval for Works of Sewage Pump Station | 5d | 2026-02-11 A | 2026-02-16 A | ENG-MT-PS-CV-S-140 | 100% |  |  | 100 mm thickness lean concrete under the foundation; Foundation; Walls; Beams; Slabs; Lightweight Concrete Roof insulation as per Architect's specification; 2 perpendicular layers of cold bitumen coats; 2 layer of 4mm HDPE membrane, 2 perpendicular layers cold bitumen coats; 1 layer EPOXY Paint 300 micron; Membrane fully bonded to prime deck and upstand; Geotextile Filter membrane uv resistance; 85mm thick thermal insulation; 1.5mm thick epdm waterproofing membrane; Supply and install External plastering to walls and columns min. 15mm thick with cement mortar of specified grade including galvanized mesh, corner beads, angle beads, CE bonds to rough and smooth plaster complete the work as per drawing & specification.; Supply and install 2 coats of weatherproof paint at walls including one prime coat and two coats and putty to give smooth Surface as a base for paint including fiberglass tape to joints and all other accessories as per manufacturers approved specification; Supply and install internal plastering to walls and columns min. 15mm thick with cement mortar of specified grade including galvanized mesh, corner beads, angle beads, CE bonds to rough and smooth plaster complete the work as per drawing & specification.; Supply and install 300*300mm glazed ceramic wall tiles on cement mortar and including rough and smooth plaster, galvanized mesh, corner beads, angle beads, CE bonds; physical units [42.53 h] | MA | PUMP |
|  | SL11 | **Gaurd Room** |  | 2026-02-18 | 2026-03-02 |  |  |  |  |  |  |  |
|  | 1 | **Submission of Material** |  | 2026-02-18 | 2026-02-19 |  |  |  |  |  |  |  |
| ENG-MT-GR-CV-S-120 |  | Material Submittal for Materials for Gaurd Room | 0d | 2026-02-18 A | 2026-02-19 A | MS-CS-TSE10 SS | 100% | 2026-02-18 | 2026-02-18 |  |  |  |
|  | 2 | **Approval of Material** |  | 2026-02-19 | 2026-03-02 |  |  |  |  |  |  |  |
| ENG-MT-GR-CV-A-130 |  | Material Approval for Materials for Gaurd Room | 7d | 2026-02-19 A | 2026-03-02 A | ENG-MT-GR-CV-S-120 | 100% | 2026-02-19 | 2026-02-28 | 100 mm thickness lean concrete under the foundation; Foundation; Slab on Grade; Beams; Columns; Slabs; Lightweight Concrete Roof insulation as per Architect's specification; Insulated brickwork. with expanded polystyrene 200mm thick; vertical straight wall complete with accessories .; Common brickwork. 150mm thick; vertical straight wall complete with accessories.; Two Layers of Bituminous Coating; CW01 - 1000 mm width x 2000 mm height; CW02 - 2000 mm width x 2000 mm height; D2 - 900 mm x 2200 mm height temper door; Supply and install 50mm thick random cut stone cladding complete with 600mm x 50mm thick coping, necessary framings, slotted anchor connection, steel tube framing, aluminum angles all necessary fittings & accessories as per manufacturer's detail & archite; Supply and install 300*300mm terrazzo tiles with 150mm high skirting at perimeter with approved quality on 30 mm mortar including sand fill material as approved by the Client (For Roof); Supply and install 300*300mm glazed ceramic wall tiles on cement mortar and including rough and smooth plaster, galvanized mesh, corner beads, angle beads, CE bonds (For Toilets); Supply and install internal plastering and 2 coats of acrylic paint at walls including one coat of primer & two coats of putty to give smooth finish; Supply and install 600*600mm porcelain tiles with approved quality on 30 mm mortar including sand fill material as approved by the Client (for Security Area); Supply and install 12.5mm thk, gypsum board suspended ceiling including suspension system, paints as required specification and material as approved by the Client including frames supports, access openings and all other accessories to complete as shown in; Guard room coping 350mm; Guard room coping 450mm; Stone coping 500mm; Stone coping 525mm; Office Chairs; Office Tables; Guard Stand; Supply and install Hand Wash Basin with Water Tap, angle valve, P-trap connected to 50mm diameter sanitary pipe fittings chased to wall.; Supply and install paper towel dispenser, surface mounted, satin finish stainless steel as per approved sample including accessories.; Supply and install mirror, size 460*910mm as per approved sample including frames, backing and all accessories to complete.; Supply and install towel ring , surface mounted, satin finish stainless steel as per approved sample including accessories.; Kitchen sink with single bowl with hot/cold water mixer.; Supply and install Base mounted flush tank water Western water closet system with lid connected to 110mm soil pipe and sanitary tee complete with jointing, angles and bent below floor slab to drainage system; Gate Valves; Slow Closing Valve; 1 meter length 10mm diameter Flexible Hose with insulated handle complete with fork support, index push, vacuum breaker; 50mm diameter; 75mm diameter; 80mm diameter; 100mm diameter; 110mm diameter; 13mm diameter; 15mm diameter; 20mm diameter; 25mm diameter; 32mm diameter; Isolation Valve Size 20; Isolation Valve Size 25; Isolation Valve Size 32; Isolation Valve Size 50; 20 mm diameter spray head for cold water supply; Supply and install Electric Water Heater set with connection; Water meter complete with accessories.; Roof drain; Vent on a roof to exhaust air; 300 X 300 mm Gully trap; inspection chamber, size 800x900x1000; 900mm x 800mm Pressure break chamber; Floor cleanout, size 75 mm diameter; Floor cleanout, size 110 mm diameter; GRP water tanks capacity of each 1000 liter complete with all fittings, all valves and concrete pad; Mini split actual capacity 2 Ton; Supply, fabricate, install and testing factory fabricated metal ducts with flanges complete with supports, vanes, dampers, links, levers and quadrants etc. as per specifications. It shall include all materials of the duct and supporting arrangement comple; Supplying, installation testing & commissioning of external insulation on ducts; Supply, fix, testing and commissioning of exhaust air/fresh air louvers of powder coated extruded aluminium construction.; Providing, fixing, testing and commissioning of powder coated extruded aluminum sections grills and diffusers with dampers.; Supply, Installation & Testing of 2 hours Fire rated system for closing the openings between rooms with help of Rock wool, G.I Sheet and Hilti or equivalent Sealants( Qty measured will be the size of opening). Item Properties shall be quoted as per techni; 4.5 KG CO2 Type Fire Extinguishers; 6 KG ABC Type Fire Extinguishers; Junction Box for lighting fixture; Trench excavation to receive 2 nos 50mm diameter PVC Conduit, sand bedding and embedded with sand encasement and backfilling with excavated material complete with warning tape at approved depth; Supply, Install, fixings, testing and commissioning 80W LED Projector waterproof DJ effect light including customized project image features complete with mounting system specification to Engineer's approval.; Earth Pit; Grounding rod 20mmX3m; Grounding rod with Pit 20mmX3m; Earthing Bar; 120mm2 Tinned copper wire; Guard Room 1; Guard Room 2; Guard Room 3; 30A, 2P AC Disconnect Switch; 20A Duplex Receptacle Floor Mounted; Twin Socket outlet; Twin Socket outlet, Weather Proof; Single gang Lighting switch; 36W LED linear Pendant lighting; 36W LED Emergency linear Pendant lighting; 13W recess mounted LED down light fitting; 13W recess emergency mounted LED down light fitting with 1.5 Hr Battery; 10.4W LED Exit light with 1.5 Hr Battery; 4mm2 Cu./FRLSZH Cable; 6mm2 Cu./FRLSZH Cable; Fire Alarm Control panel with fire alarm zoning with Mimic panel with fire alarm zoning; Main Fire Alarm Control panel with fire alarm zoning with Mimic panel with fire alarm zoning; Supply and installation of the addressable manual call point with operation safety glass breaking and pushbutton; Supply and installation of the photoelectric heat & smoke detector with base; Sounder With Beacon; Addressable Control module for Sounders; Addressable Control module for HVAC System; Addressable Monitor module for HVAC System; 2C x 1.5 Sqm FR Rated Armored - Cable For Loop Wiring; DACT (Auto - Dailer) for 24x7 Civil Defence; Transmission Communication cable - Fiber Optics 12Core; Transmission Communication cable - Ethernet Cable; Supply, install to site and installation of power supply system for fire alarm control panel; Supply, install to site and installation of power cable; Fire Fighter’s Telephone Centre; Fireman’s Telephone Jack; Voice Command Center; physical units [59.54 h] | MA |  |
|  | SL1 | **Boundary Fence** |  | 2026-02-25 | 2026-06-13 |  |  |  |  |  |  |  |
|  | 1 | **Submission of Material** |  | 2026-02-25 | 2026-02-26 |  |  |  |  |  |  |  |
| ENG-MT-FE-CV-S-110 |  | Material Submittal for Materials for Boundary Fence | 0d | 2026-02-25 A | 2026-02-26 A | MS-CS-LV10 SS | 100% | 2026-02-25 | 2026-02-25 |  |  |  |

| ID | WBS | Activity | Duration | Start | Finish | Predecessors | Complete | Planned start | Planned finish | Total float | Free float | Resources | 01- Network |
| --- | --- | --- | --- | --- | --- | --- | --- | --- | --- | --- | --- | --- | --- |
|  | 2 | **Approval of Material** |  | 2026-02-28 | 2026-06-13 |  |  |  |  |  |  |  |  |
| ENG-MT-FE-CV-A-120 |  | Material Approval for Materials for Boundary Fence | 80d | 2026-02-28 A | 2026-06-13 A | ENG-MT-FE-CV-S-110 | 100% | 2026-02-28 | 2026-06-08 |  |  | 100 mm thickness lean concrete under the foundation; Foundation; Walls; Beams; Columns; Common brickwork. 300mm thick; vertical straight wall complete with accessories.; Two Layers of Bituminous Coating; 20x20 Approved Polysulfide Joint Sealant; 2 perpendicular layers of cold bitumen coats; 2 layer of 4mm HDPE membrane, 2 perpendicular layers cold bitumen coats; 1 layer EPOXY Paint 300 micron; Membrane fully bonded to prime deck and upstand; Geotextile Filter membrane uv resistance; 85mm thick thermal insulation; 1.5mm thick epdm waterproofing membrane; Supply and install 33mm thick Lexan cladding blue complete with necessary framings & accessories all as per manufacturer's & architectural drawing.; Supply and install 50mm thick random cut stone cladding complete with 600mm x 50mm thick coping, necessary framings, slotted anchor connection, steel tube framing, aluminum angles all necessary fittings & accessories as per manufacturer's detail & archite; Supply and install External plastering to walls and columns min. 15mm thick with cement mortar of specified grade including galvanized mesh, corner beads, angle beads, CE bonds to rough and smooth plaster complete the work as per drawing & specification.; Supply and install 2 coats of weatherproof paint at walls including one prime coat and two coats and putty to give smooth Surface as a base for paint including fiberglass tape to joints and all other accessories as per manufacturers approved specification; Supply and install MODON Signage with Logo Type 1; Supply and install MODON Signage Type 2; Supply and install "Triangle Style" signage; Magnetic Control Access barrier, Automatic Vehicular Barriers to be installed on ground with magnetic access; Trench excavation to receive 2 nos 50mm diameter PVC Conduit, sand bedding and embedded with sand encasement and backfilling with excavated material complete with warning tape at approved depth; IR Intrusion Detection System Quad Beams (Tx & Rx) (SL-350 QDM); Control cable; CAT6A cable; Field Equipment Cabinet enclosed outdoor complete with precast concrete footing, suitable for parameter security and weather proof to the local enviroment. Not less than IP66 and IK rating.; Supply and install 800mm x 800mm x 800mm height concrete handhole with bituminous paint all around, 690mm x 690mm handhold cover and sump cover.; including pit excavation; 800mm depth minimum Trench excavation to receive 3 nos 50mm diameter PVC Conduit with spacer, sand bedding and embedded with sand encasement and backfill with excavated material well compacted complete with warning tape; Hot dipped galvanized cable conduits for CAT6A cable and Control Cables embedded to wall; 8 Port Industrial PoE Switch 10/100BaseT (0 deg to +70 deg. Celsius); 06C Optical Fiber SM; 48C Optical Fiber SM; 48 Core Splice Closure; Boom Barrier at Security Guard Room; Pedestrian turnstile at Security Guard Room; Access Control Unit; Access Card Reader; Magnetic Lock; Break Glass; Exit Push button; Door Sensor; Biometrics Reader; Pole/Bollard mounted IP( PoE), Automatic Number Plate Recognition (ANPR, camera, 5MP,IP 66, IR illumination, 3-8mm varifocal, auto iris lens type price include the Bollard/pole); 12U rack dimension (W x H x L) 600 x 625 x 600 mm; 4C-16mm2 CU/XLPE/PVC direct buried armored cable; 4C-10mm2 CU/XLPE/PVC direct buried armored cable; 16mm2 CU/PVC wire; 10mm2 CU/PVC wire; 400V, 3PH, 60Hz lighting control panel (LCP-02); 38W, 230V, 1PH, 60Hz fence, led linear uplight lighting, IP66; physical units [680.46 h] | MA |
|  | 1 | **Long Lead Time Items** |  | 2026-11-09 | 2026-12-06 |  |  |  |  |  |  |  |  |
|  | 2 | **Superstructure Works** |  | 2026-11-09 | 2026-12-06 |  |  |  |  |  |  |  |  |
|  | SL | **Sewage Pump Stations** |  | 2026-11-09 | 2026-11-22 |  |  |  |  |  |  |  |  |
|  | 1 | **Submission of Material** |  | 2026-11-09 | 2026-11-15 |  |  |  |  |  |  |  |  |
| ENG-MT-SPS-MC-S-100 |  | Material Submittal for Electromechanical Works for Pump Station | 6d | 2026-11-09 | 2026-11-15 | MS-CS-IR10 SS |  |  |  | -103d | 0d | physical units [51.03 h] | MA |
|  | 2 | **Approval of Material** |  | 2026-11-16 | 2026-11-22 |  |  |  |  |  |  |  |  |
| ENG-MT-SPS-MC-A-110 |  | Material Approval for Electromechanical Works for Pump Station | 6d | 2026-11-16 | 2026-11-22 | ENG-MT-SPS-MC-S-100 |  |  |  | -103d | 2d | physical units [51.03 h] | MA |
|  | SL1 | **Storage Tank (TSE)** |  | 2026-11-09 | 2026-12-06 |  |  |  |  |  |  |  |  |
|  | 1 | **Submission of Material** |  | 2026-11-09 | 2026-11-22 |  |  |  |  |  |  |  |  |
| ENG-MT-TSE-MC-S-110 |  | Material Submittal for Electromechanical Works for Storage Tank (TSE) | 12d | 2026-11-09 | 2026-11-22 | MS-CS-TE10 SS |  |  |  | -115d | 0d | physical units [102.07 h] | MA |
|  | 2 | **Approval of Material** |  | 2026-11-23 | 2026-12-06 |  |  |  |  |  |  |  |  |
| ENG-MT-TSE-MC-A-120 |  | Material Approval for Electromechanical Works for Storage Tank (TSE) | 12d | 2026-11-23 | 2026-12-06 | ENG-MT-TSE-MC-S-110 |  |  |  | -115d | 0d | physical units [102.07 h] | MA |
|  | PROC | **Procurement Cycle** |  | 2026-05-02 | 2027-06-30 |  |  |  |  |  |  |  |  |
|  | NLL | **Short Lead Time Items** |  | 2026-05-02 | 2027-05-20 |  |  |  |  |  |  |  |  |
|  | INF | **Infrastructure Networks** |  | 2026-05-02 | 2027-05-20 |  |  |  |  |  |  |  |  |
|  | SD | **Storm Drainage Network** |  | 2026-06-22 | 2027-03-23 |  |  |  |  |  |  |  |  |
|  | PO | **Issuance of Purchase Orders** |  | 2026-06-22 | 2026-12-13 |  |  |  |  |  |  |  |  |
|  | 1 | **Main Line Sections** |  | 2026-06-22 | 2026-07-02 |  |  |  |  |  |  |  |  |
| PRO-SD-PO-100 |  | Issuance of Purchase Order for Manholes of Storm Drainage Network | 2d | 2026-06-22 A | 2026-06-23 A | ENG-MT-SD-ML-A-100, ENG-SH-SD-ML-A-110, ENG-MS-SD-ML-A-110 | 100% | 2026-11-02 | 2026-11-03 |  |  | physical units [33.94 h] | NLI |
| PRO-SD-PO-110 |  | Issuance of Purchase Order for Main Line Pipes of Storm Drainage Network | 2d | 2026-07-01 A | 2026-07-02 A | ENG-MT-SD-ML-A-110, ENG-SH-SD-ML-A-110, PRO-SD-PO-100, ENG-MS-DPO-A-130 | 100% | 2026-09-30 | 2026-10-01 |  |  | physical units [33.94 h] | NLI |
|  | 2 | **Catch Basin Sections** |  | 2026-07-04 | 2026-07-14 |  |  |  |  |  |  |  |  |
| PRO-SD-PO-130 |  | Issuance of Purchase Order for Catch Basins of Storm Drainage Network | 5d | 2026-07-04 A | 2026-07-07 A | ENG-MT-SD-CB-A-100, ENG-SH-SD-CB-A-110, PRO-SD-PO-110, ENG-MS-SD-CB-A-110 | 100% | 2026-11-04 | 2026-11-09 |  |  | physical units [84.86 h] | NLI |
| PRO-SD-PO-150 |  | Issuance of Purchase Order for Catch Basin Pipes of Storm Drainage Network | 6d | 2026-07-08 A | 2026-07-14 A | ENG-MT-SD-CB-A-110, ENG-SH-SD-CB-A-110, PRO-SD-PO-130 | 100% | 2026-11-10 | 2026-11-16 |  |  | physical units [101.83 h] | NLI |

| ID | WBS | Activity | Duration | Start | Finish | Predecessors | Complete | Planned start | Planned finish | Total float | Free float | Resources | 01- Network |
| --- | --- | --- | --- | --- | --- | --- | --- | --- | --- | --- | --- | --- | --- |
|  | 3 | **Testing and Finishes** |  | 2026-08-06 | 2026-09-05 |  |  |  |  |  |  |  |  |
| PRO-SD-PO-120 |  | Issuance of Purchase Order for Manhole Covers of Storm Drainage Network | 6d | 2026-08-06 A | 2026-08-12 A | ENG-MT-SD-TF-A-100, ENG-SH-SD-ML-A-110, PRO-SD-PO-150 | 100% | 2026-11-17 | 2026-11-23 |  |  | physical units [101.83 h] | NLI |
| PRO-SD-PO-140 |  | Issuance of Purchase Order for Catch Basin Covers of Storm Drainage Network | 6d | 2026-08-30 A | 2026-09-05 A | ENG-MT-SD-TF-A-110, ENG-SH-SD-CB-A-110, PRO-SD-PO-120 | 100% | 2026-11-24 | 2026-11-30 |  |  | physical units [101.83 h] | NLI |
|  | TE1 | **Storm Drainage Ponds** |  | 2026-12-07 | 2026-12-13 |  |  |  |  |  |  |  |  |
| PRO-DPO-CV-PO-10 |  | Issuance of Purchase Order for Materials of Storm Drainage Ponds | 6d | 2026-12-07 | 2026-12-13 | MS-CF-ENG, ENG-MT-DPO-CV-A-110, ENG-SH-DPO-A-120, PRO-SD-PO-140, ENG-MS-DPO-A-130 |  |  |  | -115d | 0d | physical units [101.83 h] | NLI |
|  | MF | **Manufacturing of Material** |  | 2026-06-24 | 2027-02-25 |  |  |  |  |  |  |  |  |
|  | 1 | **Main Line Sections** |  | 2026-06-24 | 2026-07-07 |  |  |  |  |  |  |  |  |
| PRO-SD-MF-100 |  | Manufacturing of Materials for Manholes of Storm Drainage Network | 8d | 2026-06-24 A | 2026-07-02 A | PRO-SD-PO-100 | 100% | 2026-11-04 | 2026-11-12 |  |  | physical units [135.78 h] | NLI |
| PRO-SD-MF-110 |  | Manufacturing of Materials for Main Line Pipes of Storm Drainage Network | 24d | 2026-07-05 A | 2026-07-07 A | PRO-SD-PO-110 | 100% | 2026-10-03 | 2026-10-29 |  |  | physical units [407.34 h] | NLI |
|  | 2 | **Catch Basin Sections** |  | 2026-07-15 | 2026-09-15 |  |  |  |  |  |  |  |  |
| PRO-SD-MF-150 |  | Manufacturing of Materials for Catch Basin Pipes of Storm Drainage Network | 25d | 2026-07-15 A | 2026-08-12 A | PRO-SD-PO-150 | 100% | 2026-11-17 | 2026-12-15 |  |  | physical units [424.31 h] | NLI |
| PRO-SD-MF-130 |  | Manufacturing of Materials for Catch Basins of Storm Drainage Network | 25d | 2026-08-18 A | 2026-09-15 A | PRO-SD-PO-130 | 100% | 2026-11-10 | 2026-12-08 |  |  | physical units [424.31 h] | NLI |
|  | 3 | **Testing and Finishes** |  | 2026-08-13 | 2026-10-11 |  |  |  |  |  |  |  |  |
| PRO-SD-MF-120 |  | Manufacturing of Materials for Manhole Covers of Storm Drainage Network | 20d | 2026-08-13 A | 2026-09-05 A | PRO-SD-PO-120, PRO-SD-MF-150 | 100% | 2026-12-16 | 2027-01-07 |  |  | physical units [339.45 h] | NLI |
| PRO-SD-MF-140 |  | Manufacturing of Materials for Catch Basin Covers of Storm Drainage Network | 30d | 2026-09-06 A | 2026-10-11 A | PRO-SD-PO-140, PRO-SD-MF-120 | 100% | 2027-01-09 | 2027-02-11 |  |  | physical units [509.17 h] | NLI |
|  | TE | **Storm Drainage Ponds** |  | 2026-12-14 | 2027-02-25 |  |  |  |  |  |  |  |  |
| PRO-DPO-CV-MF-10 |  | Manufacturing of Materials of Storm Drainage Ponds | 64d | 2026-12-14 | 2027-02-25 | PRO-DPO-CV-PO-10 |  |  |  | -115d | 0d | physical units [1086.23 h] | NLI |
|  | 1DL | **1st Material Delivery & Site Inspection** |  | 2026-07-04 | 2027-03-02 |  |  |  |  |  |  |  |  |
|  | 1 | **Main Line Sections** |  | 2026-07-04 | 2026-07-12 |  |  |  |  |  |  |  |  |
| PRO-SD-1DL-100 |  | 1ST Material Delivery for Manholes of Storm Drainage Network | 4d | 2026-07-04 A | 2026-07-07 A | PRO-SD-MF-100 | 100% | 2026-11-14 | 2026-11-17 |  |  | physical units [67.89 h] | NLI |
| PRO-SD-1DL-110 |  | 1ST Material Delivery for Main Line Pipes of Storm Drainage Network | 4d | 2026-07-08 A | 2026-07-12 A | MS-CF-ENG, PRO-SD-MF-110, PRO-SD-1DL-100 | 100% | 2026-10-31 | 2026-11-03 |  |  | physical units [67.89 h] | NLI |
|  | 2 | **Catch Basin Sections** |  | 2026-09-16 | 2026-09-30 |  |  |  |  |  |  |  |  |
| PRO-SD-1DL-130 |  | 1ST Material Delivery for Catch Basins of Storm Drainage Network | 4d | 2026-09-16 A | 2026-09-20 A | PRO-SD-MF-130, PRO-SD-1DL-110 | 100% | 2026-12-09 | 2026-12-13 |  |  | physical units [67.89 h] | NLI |
| PRO-SD-1DL-120 |  | 1ST Material Delivery for Catch Basin Pipes of Storm Drainage Network | 4d | 2026-09-27 A | 2026-09-30 A | PRO-SD-MF-150, PRO-SD-1DL-130 | 100% | 2026-12-16 | 2026-12-20 |  |  | physical units [67.89 h] | NLI |

| ID | WBS | Activity | Duration | Start | Finish | Predecessors | Complete | Planned start | Planned finish | Total float | Free float | Resources | 01- Network |
| --- | --- | --- | --- | --- | --- | --- | --- | --- | --- | --- | --- | --- | --- |
|  | 3 | **Testing and Finishes** |  | 2026-10-05 | 2026-10-15 |  |  |  |  |  |  |  |  |
| PRO-SD-1DL-140 |  | 1ST Material Delivery for Manholes Covers of Storm Drainage Network | 4d | 2026-10-05 A | 2026-10-08 A | PRO-MV-1DL-100, PRO-SD-MF-120, PRO-SD-1DL-120 | 100% | 2027-01-09 | 2027-01-12 |  |  | physical units [67.89 h] | NLI |
| PRO-SD-1DL-150 |  | 1ST Material Delivery for Catch Basin Covers of Storm Drainage Network | 4d | 2026-10-12 A | 2026-10-15 A | PRO-SD-MF-140, PRO-SD-1DL-140 | 100% | 2027-02-13 | 2027-02-16 |  |  | physical units [67.89 h] | NLI |
|  | TE2 | **Storm Drainage Ponds** |  | 2027-02-27 | 2027-03-02 |  |  |  |  |  |  |  |  |
| PRO-DPO-CV-1DL-10 |  | 1ST Material Delivery for Materials of Drainage Ponds | 4d | 2027-02-27 | 2027-03-02 | PRO-DPO-CV-MF-10, PRO-SD-1DL-150 |  |  |  | -115d | 1d | physical units [67.89 h] | NLI |
|  | DL | **Material Delivery & Site Inspection** |  | 2026-07-20 | 2027-03-23 |  |  |  |  |  |  |  |  |
|  | 1 | **Main Line Sections** |  | 2026-07-20 | 2026-11-01 |  |  |  |  |  |  |  |  |
| PRO-R25-SD-DL-120 |  | Material Delivery & Site Inspection of Main Line Pipes of Storm Drainage Network | 15d | 2026-07-20 A | 2026-11-01 A | PRO-SD-1DL-110 | 100% | 2026-11-04 | 2026-11-21 |  |  | Depth Between 0m to 1.50m; Depth Between 1.50m to 2.50m; Depth Between 2.50m to 3.50m; Depth > 3.50m; Depth Between 3.50m to 4.50m; Depth > 4.50m; GRP Pipe, 900mm diameter with Depth Between 3.51m to 4.50m; physical units [254.58 h] | NLI |
| PRO-R25-SD-DL-100 |  | Material Delivery & Site Inspection of Manholes of Storm Drainage Network | 10d | 2026-10-21 A | 2026-11-01 A | PRO-SD-1DL-100 | 100% | 2026-11-18 | 2026-11-29 |  |  | MH depth 1.5 - 2.5m; MH depth 2.5 - 3.5m; MH depth 3.5 - 4.5m; MH depth > 4.50m; MH depth 2.5 -3.5m; MH depth > 3.50m; physical units [169.72 h] | NLI |
|  | 2 | **Catch Basin Sections** |  | 2026-09-21 | 2026-10-08 |  |  |  |  |  |  |  |  |
| PRO-R25-SD-DL-130 |  | Material Delivery & Site Inspection of Catch Basins for Storm Drainage Network | 8d | 2026-09-21 A | 2026-09-30 A | PRO-SD-1DL-130 | 100% | 2026-12-14 | 2026-12-22 |  |  | Single Catch Basin 1000mm x 1000mm; Double Catch Basin 1200mm x 2300mm; physical units [135.78 h] | NLI |
| PRO-R25-SD-DL-110 |  | Material Delivery & Site Inspection of Catch Basin Pipes for Storm Drainage Network | 7d | 2026-10-01 A | 2026-10-08 A | PRO-SD-1DL-120, PRO-R25-SD-DL-130 | 100% | 2026-12-23 | 2026-12-30 |  |  | Depth Between 0m to 1.50m; Depth Between 1.50m to 2.50m; Depth Between 2.50m to 3.50m; Depth > 3.50m; Depth Between 3.50m to 4.50m; Depth > 4.50m; GRP Pipe, 900mm diameter with Depth Between 3.51m to 4.50m; physical units [118.81 h] | NLI |
|  | 3 | **Testing and Finishes** |  | 2026-10-10 | 2026-11-01 |  |  |  |  |  |  |  |  |
| PRO-R25-SD-DL-140 |  | Material Delivery & Site Inspection of Manholes Covers for Storm Drainage Network | 20d | 2026-10-10 A | 2026-11-01 A | PRO-SD-1DL-140, PRO-R25-SD-DL-110 | 100% | 2027-01-13 | 2027-02-04 |  |  | MH depth 1.5 - 2.5m; MH depth 2.5 - 3.5m; MH depth 3.5 - 4.5m; MH depth > 4.50m; MH depth 2.5 -3.5m; MH depth > 3.50m; physical units [339.45 h] | NLI |
| PRO-R25-SD-DL-150 |  | Material Delivery & Site Inspection of Catch Basin Covers for Storm Drainage Network | 14d | 2026-10-17 A | 2026-11-01 A | PRO-SD-1DL-150, PRO-R25-SD-DL-140 SS | 100% | 2027-02-17 | 2027-03-04 |  |  | Single Catch Basin 1000mm x 1000mm; Double Catch Basin 1200mm x 2300mm; physical units [237.61 h] | NLI |
|  | TE3 | **Storm Drainage Ponds** |  | 2027-03-04 | 2027-03-23 |  |  |  |  |  |  |  |  |
| PRO-DPO-CV-DL-10 |  | Material Delivery & Site Inspection for Materials of Storm Drainage Ponds | 14d | 2027-03-04 | 2027-03-23 | PRO-LV-TT-1DL-100, PRO-R25-IR-DL-140, PRO-DPO-CV-1DL-10, PRO-R25-SD-DL-150 SS, PRO-R25-TSE-DL-120 |  |  |  | -116d | 0d | Finished grouted riprap for Pond 300mm as per drawings; physical units [237.61 h] | NLI |
|  | SW | **Sewage Network** |  | 2026-09-29 | 2026-12-14 |  |  |  |  |  |  |  |  |
|  | PO | **Issuance of Purchase Orders** |  | 2026-09-29 | 2026-10-22 |  |  |  |  |  |  |  |  |
|  | 1 | **Main Line Sections** |  | 2026-09-29 | 2026-10-14 |  |  |  |  |  |  |  |  |
| PRO-SW-PO-100 |  | Issuance of Purchase Order for Main Line Pipes of Sewage Network | 7d | 2026-09-29 A | 2026-10-06 A | ENG-MT-SW-ML-A-110, ENG-SH-SW-ML-A-110, ENG-MS-SW-ML-A-110 | 100% | 2026-11-02 | 2026-11-09 |  |  | physical units [118.81 h] | NLI |
| PRO-SW-PO-110 |  | Issuance of Purchase Order for Manhole of Sewage Network | 7d | 2026-10-07 A | 2026-10-14 A | ENG-MT-SW-ML-A-100, ENG-SH-SW-ML-A-110, PRO-SW-PO-100 | 100% | 2026-11-10 | 2026-11-17 |  |  | physical units [118.81 h] | NLI |
|  | 3 | **Testing and Finishes** |  | 2026-10-15 | 2026-10-22 |  |  |  |  |  |  |  |  |
| PRO-SW-PO-120 |  | Issuance of Purchase Order for Manhole Covers of Sewage Network | 7d | 2026-10-15 A | 2026-10-22 A | ENG-MT-SW-TF-A-100, ENG-SH-SW-ML-A-110, PRO-SW-PO-110 | 100% | 2026-11-18 | 2026-11-25 |  |  | physical units [118.81 h] | NLI |

| ID | WBS | Activity | Duration | Start | Finish | Predecessors | Complete | Remaining | Planned start | Planned finish | Total float | Free float | Resources | 01- Network |
| --- | --- | --- | --- | --- | --- | --- | --- | --- | --- | --- | --- | --- | --- | --- |
|  | MF | **Manufacturing of Material** |  | 2026-10-19 | 2026-10-29 |  |  |  |  |  |  |  |  |  |
|  | 1 | **Main Line Sections** |  | 2026-10-19 | 2026-10-29 |  |  |  |  |  |  |  |  |  |
| PRO-SW-MF-100 |  | Manufacturing of Main Line Pipes for Sewage Network | 10d | 2026-10-19 A | 2026-10-29 A | PRO-SW-PO-100 | 100% |  | 2026-11-10 | 2026-11-21 |  |  | physical units [169.72 h] | NLI |
| PRO-SW-MF-110 |  | Manufacturing of Manholes for Sewage Network | 10d | 2026-10-19 A | 2026-10-29 A | PRO-SW-PO-110, PRO-SW-MF-100 SS | 100% |  | 2026-11-18 | 2026-11-29 |  |  | physical units [169.72 h] | NLI |
|  | 3 | **Testing and Finishes** |  | 2026-10-24 | 2026-10-29 |  |  |  |  |  |  |  |  |  |
| PRO-SW-MF-120 |  | Manufacturing of Manhole Covers for Sewage Network | 6d | 2026-10-24 A | 2026-10-29 A | PRO-SW-PO-120, PRO-SW-MF-110 SS | 100% |  | 2026-11-26 | 2026-12-02 |  |  | physical units [101.83 h] | NLI |
|  | 1DL | **1st Material Delivery & Site Inspection** |  | 2026-10-31 | 2026-12-09 |  |  |  |  |  |  |  |  |  |
|  | 1 | **Main Line Sections** |  | 2026-10-31 | 2026-12-08 |  |  |  |  |  |  |  |  |  |
| PRO-SW-1DL-100 |  | 1ST Material Delivery for Main Line Pipes of Sewage Network | 4d | 2026-10-31 A | 2026-11-10 | PRO-SW-MF-100 | 50% | 2d | 2026-11-22 | 2026-11-25 | -61d | 22d | physical units [67.89 h] | NLI |
| PRO-SW-1DL-110 |  | 1ST Material Delivery for Manholes of Sewage Network | 4d | 2026-10-31 A | 2026-12-08 | MS-CF-ENG, PRO-SW-MF-110, PRO-SW-1DL-100, PRO-SW-MF-120 | 50% | 2d | 2026-12-03 | 2026-12-07 | -83d | 0d | physical units [67.89 h] | NLI |
|  | 3 | **Testing and Finishes** |  | 2026-11-01 | 2026-12-09 |  |  |  |  |  |  |  |  |  |
| PRO-SW-1DL-120 |  | 1ST Material Delivery for Manholes Covers of Sewage Network | 2d | 2026-11-01 A | 2026-12-09 | PRO-SW-MF-120, PRO-SW-1DL-110 | 50% | 1d | 2026-12-08 | 2026-12-09 | -78d | 0d | physical units [33.94 h] | NLI |
|  | DL | **Material Delivery & Site Inspection** |  | 2026-10-31 | 2026-12-14 |  |  |  |  |  |  |  |  |  |
|  | 1 | **Main Line Sections** |  | 2026-10-31 | 2026-12-14 |  |  |  |  |  |  |  |  |  |
| PRO-R25-SW-DL-100 |  | Material Delivery & Site Inspection of Main Line Pipes for Sewage Network | 4d | 2026-10-31 A | 2026-12-14 | PRO-SW-1DL-100, PRO-R25-SW-DL-110, PRO-SW-1DL-120, PRO-R25-SW-DL-120 | 50% | 2d | 2026-12-15 | 2026-12-19 | -78d | 14d | Depth Between 0m to 1.50m; Depth Between 1.50m to 2.50m; Depth > 2.50m; Depth Between 2.50m to 3.50m; Depth Between 3.50m to 4.50m; Depth Between 4.50m to 5.50m; Depth > 5.50m; HDPE Force Main (PE 100, SDR 11, PN 16 bar) DN 160 mm diameter, in trenches depth: 0- 1.5m; HDPE Force Main (PE 100, SDR 11, PN 16 bar) DN 160 mm diameter, in trenches depth: 1.51- 2.5m; Air valves with dia 50 mm; Gate valves Dia 50 mm; Air valve chamber (1000x 1000 mm); physical units [67.89 h] | NLI |
| PRO-R25-SW-DL-110 |  | Material Delivery & Site Inspection of Manholes for Sewage Network | 4d | 2026-10-31 A | 2026-12-10 | PRO-SW-1DL-110 | 50% | 2d | 2026-12-08 | 2026-12-12 | -83d | 1d | Depth: 0 - 1.5m; Depth: 1.51 - 2.5m; Depth: 2.51 - 3.5m; Depth: 3.51 - 4.5m; Depth: 4.51 - 5.5m; Depth > 5.50m; physical units [67.89 h] | NLI |
|  | 3 | **Testing and Finishes** |  | 2026-10-31 | 2026-12-12 |  |  |  |  |  |  |  |  |  |
| PRO-R25-SW-DL-120 |  | Material Delivery & Site Inspection of Manholes Covers for Sewage Network | 4d | 2026-10-31 A | 2026-12-12 | PRO-SW-1DL-120 | 50% | 2d | 2026-12-10 | 2026-12-14 | -78d | 0d | Depth: 0 - 1.5m; Depth: 1.51 - 2.5m; Depth: 2.51 - 3.5m; Depth: 3.51 - 4.5m; Depth: 4.51 - 5.5m; Depth > 5.50m; physical units [67.89 h] | NLI |
|  | TSE | **Treated Sewage Effluent (Tse)** |  | 2026-11-09 | 2027-01-07 |  |  |  |  |  |  |  |  |  |
|  | PO | **Issuance of Purchase Orders** |  | 2026-11-09 | 2026-11-16 |  |  |  |  |  |  |  |  |  |
| PRO-TSE-PO-120 |  | Issuance of Purchase Order for Materials of Treated Sewage Effluent (Tse) | 7d | 2026-11-09 | 2026-11-16 | ENG-MT-IR-ML-A-120, ENG-SH-TSE-ML-A-120, ENG-MS-TSE-ML-A-120 |  |  |  |  | -100d | 0d | physical units [118.81 h] | NLI |
|  | MF | **Manufacturing of Material** |  | 2026-11-17 | 2026-12-14 |  |  |  |  |  |  |  |  |  |
| PRO-TSE-MF-120 |  | Manufacturing of Materials for Treated Sewage Effluent (Tse) | 24d | 2026-11-17 | 2026-12-14 | PRO-TSE-PO-120 |  |  |  |  | -100d | 0d | physical units [407.34 h] | NLI |
|  | 1DL | **1st Material Delivery & Site Inspection** |  | 2026-12-15 | 2026-12-22 |  |  |  |  |  |  |  |  |  |
| PRO-TSE-1DL-120 |  | 1ST Material Delivery for Materials of Treated Sewage Effluent (Tse) | 7d | 2026-12-15 | 2026-12-22 | MS-CF-ENG, PRO-TSE-MF-120 |  |  |  |  | -100d | 0d | physical units [118.81 h] | NLI |

| ID | WBS | Activity | Duration | Start | Finish | Predecessors | Complete | Planned start | Planned finish | Total float | Free float | Resources | 01- Network |
| --- | --- | --- | --- | --- | --- | --- | --- | --- | --- | --- | --- | --- | --- |
|  | DL | **Material Delivery & Site Inspection** |  | 2026-12-23 | 2027-01-07 |  |  |  |  |  |  |  |  |
| PRO-R25-TSE-DL-120 |  | Material Delivery & Site Inspection of Materials for Treated Sewage Effluent (Tse) | 14d | 2026-12-23 | 2027-01-07 | PRO-TSE-1DL-120 |  |  |  | -100d | 0d | Depth Between 0m to 1.50m; Depth Between 1.50m to 2.50m; Depth > 2.50m; Gate valves dia 50 mm; Gate valves dia 100 mm; Gate valves dia 150 mm; Gate valves dia 200 mm; Air valves with dia 50 mm; Washout valve dia 100 mm; Wash out chamber (2500x 2500mm); Air valve chamber (1000x 1000 mm); Flow meter chamber (1500x 3000 mm); Flow meter dia 150 mm; Glass Fused Bolted (GLS) 1500 m3 Tank with associated accessories & manufacturer recommendation for the foundation; physical units [237.61 h] | NLI |
|  | PW | **Potable Water Network** |  | 2026-05-02 | 2027-04-17 |  |  |  |  |  |  |  |  |
|  | PO | **Issuance of Purchase Orders** |  | 2026-05-02 | 2026-11-21 |  |  |  |  |  |  |  |  |
|  | 1 | **Main Line Sections** |  | 2026-05-02 | 2026-05-12 |  |  |  |  |  |  |  |  |
| PRO-PW-PO-100 |  | Issuance of Purchase Order for Main Line Pipes and Materials of Potable Water Network | 11d | 2026-05-02 A | 2026-05-12 A | ENG-MT-PW-ML-A-100, ENG-SH-PW-ML-A-110, ENG-MS-PW-ML-A-110, ENG-MS-MV-A-110 | 100% | 2026-05-02 | 2026-05-13 |  |  | physical units [186.7 h] | NLI |
| PRO-PW-PO-110 |  | Issuance of Purchase Order for Valves of Potable Water Network | 11d | 2026-05-02 A | 2026-05-12 A | ENG-MT-PW-ML-A-110, ENG-SH-PW-ML-A-110, PRO-PW-PO-100, ENG-MS-HS-A-10 | 100% | 2026-05-02 | 2026-05-13 |  |  | physical units [186.7 h] | NLI |
|  | 3 | **Fire Hydrant** |  | 2026-11-09 | 2026-11-14 |  |  |  |  |  |  |  |  |
| PRO-PW-PO-120 |  | Issuance of Purchase Order for Fire Hydrants of Potable Water Network | 5d | 2026-11-09 | 2026-11-14 | ENG-MT-PW-FH-A-100, ENG-SH-PW-FH-A-110, PRO-PW-PO-110 |  |  |  | -104d | 0d | physical units [84.86 h] | NLI |
|  | 4 | **Testing and Finishes** |  | 2026-11-15 | 2026-11-21 |  |  |  |  |  |  |  |  |
| PRO-PW-PO-130 |  | Issuance of Purchase Order for Surface Box of Potable Water Network | 6d | 2026-11-15 | 2026-11-21 | ENG-MT-PW-TF-A-100, ENG-SH-PW-ML-A-110, PRO-PW-PO-120 |  |  |  | -104d | 0d | physical units [101.83 h] | NLI |
|  | MF | **Manufacturing of Material** |  | 2026-07-05 | 2027-01-18 |  |  |  |  |  |  |  |  |
|  | 1 | **Main Line Sections** |  | 2026-07-05 | 2026-12-06 |  |  |  |  |  |  |  |  |
| PRO-PW-MF-100 |  | Manufacturing of Main Line Pipes and Materials for Potable Water Network | 34d | 2026-07-05 A | 2026-07-07 A | PRO-PW-PO-100 | 100% | 2026-09-28 | 2026-11-05 |  |  | physical units [577.06 h] | NLI |
| PRO-PW-MF-110 |  | Manufacturing of Valves for Potable Water Network | 24d | 2026-11-09 | 2026-12-06 | PRO-PW-PO-110, PRO-PW-MF-100 |  |  |  | -59d | 0d | physical units [407.34 h] | NLI |
|  | 3 | **Fire Hydrant** |  | 2026-12-07 | 2026-12-23 |  |  |  |  |  |  |  |  |
| PRO-PW-MF-120 |  | Manufacturing of Fire Hydrants for Potable Water Network | 15d | 2026-12-07 | 2026-12-23 | PRO-PW-PO-120, PRO-PW-MF-110 |  |  |  | -59d | 22d | physical units [254.58 h] | NLI |
|  | 4 | **Testing and Finishes** |  | 2026-11-22 | 2027-01-18 |  |  |  |  |  |  |  |  |
| PRO-PW-MF-130 |  | Manufacturing for Surface Box of Potable Water Network | 50d | 2026-11-22 | 2027-01-18 | PRO-PW-PO-130 |  |  |  | -90d | 0d | physical units [848.62 h] | NLI |
|  | 1DL | **1st Material Delivery & Site Inspection** |  | 2026-07-12 | 2027-01-26 |  |  |  |  |  |  |  |  |
|  | 1 | **Main Line Sections** |  | 2026-07-12 | 2027-01-26 |  |  |  |  |  |  |  |  |
| PRO-PW-1DL-100 |  | 1ST Material Delivery for Main Line Pipes and Materials of Potable Water Network | 7d | 2026-07-12 A | 2026-07-16 A | PRO-PW-MF-100, PRO-PW-MF-130 | 100% | 2026-12-08 | 2026-12-15 |  |  | physical units [118.81 h] | NLI |
| PRO-PW-1DL-110 |  | 1ST Material Delivery for Valves of Potable Water Network | 7d | 2027-01-19 | 2027-01-26 | PRO-PW-MF-110, PRO-PW-1DL-100 |  |  |  | -89d | 0d | physical units [118.81 h] | NLI |
|  | 3 | **Fire Hydrant** |  | 2027-01-19 | 2027-01-26 |  |  |  |  |  |  |  |  |
| PRO-PW-1DL-120 |  | 1ST Material Delivery for Fire Hydrants of Potable Water Network | 7d | 2027-01-19 | 2027-01-26 | PRO-PW-MF-120, PRO-PW-1DL-110 SS |  |  |  | -81d | 0d | physical units [118.81 h] | NLI |

| ID | WBS | Activity | Duration | Start | Finish | Predecessors | Complete | Planned start | Planned finish | Total float | Free float | Resources | 01- Network |
| --- | --- | --- | --- | --- | --- | --- | --- | --- | --- | --- | --- | --- | --- |
|  | 4 | **Testing and Finishes** |  | 2027-01-19 | 2027-01-26 |  |  |  |  |  |  |  |  |
| PRO-PW-1DL-130 |  | 1ST Material Delivery for Finishes of Potable Water Network | 7d | 2027-01-19 | 2027-01-26 | PRO-PW-MF-130 |  |  |  | -82d | 0d | physical units [118.81 h] | NLI |
|  | DL | **Material Delivery & Site Inspection** |  | 2026-10-10 | 2027-04-17 |  |  |  |  |  |  |  |  |
|  | 1 | **Main Line Sections** |  | 2026-10-10 | 2027-02-20 |  |  |  |  |  |  |  |  |
| PRO-R25-PW-DL-100 |  | Material Delivery & Site Inspection of Main Line Pipes and Materials for Potable Water Network | 21d | 2026-10-10 A | 2027-01-09 A | PRO-PW-1DL-100 | 100% | 2026-12-16 | 2027-01-09 |  |  | Depth Between 0m to 1.50m; Depth Between 1.50m to 2.50m; Depth > 2.50m; Glass Fused Bolted (GLS) 1500 m3 Tank with associated accessories & manufacturer recommendation for the foundation; physical units [356.42 h] | NLI |
| PRO-R25-PW-DL-110 |  | Material Delivery & Site Inspection of Valves for Potable Water Network | 21d | 2027-01-27 | 2027-02-20 | PRO-PW-1DL-110, PRO-R25-PW-DL-100 |  |  |  | -89d | 0d | Gate valves Dia 50 mm; Gate valves Dia 100 mm; Gate valves Dia 150 mm; Gate valves Dia 250 mm; Air valves with Dia 50 mm; Washout valve Dia 100 mm; Wash out chamber (2500x 2500mm); Air valve chamber (1000x 1000 mm); Flow meter chamber (1500x 2500 mm); Flow meter dia 100 mm; physical units [356.42 h] | NLI |
|  | 3 | **Fire Hydrant** |  | 2027-01-27 | 2027-02-02 |  |  |  |  |  |  |  |  |
| PRO-R25-PW-DL-120 |  | Material Delivery & Site Inspection of Fire Hydrants for Potable Water Network | 6d | 2027-01-27 | 2027-02-02 | PRO-PW-1DL-120 |  |  |  | -77d | 4d | 3-outlet fire hydrant (2 x 2.5 inch and 1 x 4.5 inch) in the form of a separate dry vacuum cylinder, complete according to drawings.; physical units [101.83 h] | NLI |
|  | 4 | **Testing and Finishes** |  | 2027-01-27 | 2027-04-17 |  |  |  |  |  |  |  |  |
| PRO-R25-PW-DL-130 |  | Material Delivery & Site Inspection for Finishes of Potable Water Network | 66d | 2027-01-27 | 2027-04-17 | PRO-PW-1DL-130 |  |  |  | -82d | 7d | Depth Between 0m to 1.50m; Depth Between 1.50m to 2.50m; Depth > 2.50m; physical units [1120.17 h] | NLI |
|  | IR | **Irrigation Network** |  | 2026-11-22 | 2027-02-16 |  |  |  |  |  |  |  |  |
|  | PO | **Issuance of Purchase Orders** |  | 2026-11-22 | 2026-12-01 |  |  |  |  |  |  |  |  |
|  | 1 | **Main Line Pipes** |  | 2026-11-22 | 2026-12-01 |  |  |  |  |  |  |  |  |
| PRO-IR-PO-100 |  | Issuance of Purchase Order for Main Line Pipes of Irrigation Network | 5d | 2026-11-22 | 2026-11-26 | ENG-MT-IR-ML-A-100, ENG-SH-IR-ML-A-110, PRO-PW-PO-130, ENG-MS-IR-ML-A-110, ENG-MS-MV-A-120, ENG-MS-SL-A-110, ENG-MS-TE-A-110, ENG-MS-CTV-A-110 |  |  |  | -104d | 0d | physical units [84.86 h] | NLI |
| PRO-IR-PO-110 |  | Issuance of Purchase Order for Valves of Irrigation Network | 4d | 2026-11-28 | 2026-12-01 | ENG-MT-IR-ML-A-110, ENG-SH-IR-ML-A-110, PRO-IR-PO-100 |  |  |  | -104d | 0d | physical units [67.89 h] | NLI |
|  | MF | **Manufacturing of Material** |  | 2026-11-28 | 2027-01-14 |  |  |  |  |  |  |  |  |
|  | 1 | **Main Line Pipes** |  | 2026-11-28 | 2027-01-14 |  |  |  |  |  |  |  |  |
| PRO-IR-MF-100 |  | Manufacturing of Main Line Pipes for Irrigation Network | 21d | 2026-11-28 | 2026-12-21 | PRO-IR-PO-100 |  |  |  | -88d | 0d | physical units [356.42 h] | NLI |
| PRO-IR-MF-110 |  | Manufacturing of Valves for Irrigation Network | 21d | 2026-12-22 | 2027-01-14 | PRO-IR-PO-110, PRO-IR-MF-100 |  |  |  | -88d | 0d | physical units [356.42 h] | NLI |
|  | 1DL | **1st Material Delivery & Site Inspection** |  | 2026-12-22 | 2027-01-23 |  |  |  |  |  |  |  |  |
|  | 1 | **Main Line Pipes** |  | 2026-12-22 | 2027-01-23 |  |  |  |  |  |  |  |  |
| PRO-IR-1DL-100 |  | 1ST Material Delivery for Main Line Pipes of Irrigation Network | 7d | 2026-12-22 | 2026-12-29 | PRO-IR-MF-100 |  |  |  | -88d | 0d | physical units [118.81 h] | NLI |
| PRO-IR-1DL-110 |  | 1ST Material Delivery for Valves of Irrigation Network | 7d | 2027-01-16 | 2027-01-23 | PRO-IR-MF-110, PRO-IR-1DL-100 |  |  |  | -88d | 0d | physical units [118.81 h] | NLI |
|  | DL | **Material Delivery & Site Inspection** |  | 2026-12-30 | 2027-02-16 |  |  |  |  |  |  |  |  |
|  | 1 | **Main Line Pipes** |  | 2026-12-30 | 2027-02-16 |  |  |  |  |  |  |  |  |
| PRO-R25-IR-DL-100 |  | Material Delivery & Site Inspection of Main Line Pipes for Irrigation Network | 21d | 2026-12-30 | 2027-01-23 | PRO-IR-1DL-100 |  |  |  | -88d | 0d | pipe line O.D 32 mm PN 10, in depth 0 to 1.5 m; pipe line O.D 40 mm PN 10, in depth 0 to 1.5 m; pipe line O.D 50 mm PN 10, in depth 0 to 1.5 m; physical units [356.42 h] | NLI |
| PRO-R25-IR-DL-110 |  | Material Delivery & Site Inspection of Valves for Irrigation Network | 21d | 2027-01-24 | 2027-02-16 | PRO-IR-1DL-110, PRO-R25-IR-DL-100 |  |  |  | -88d | 0d | Gate valve 50 mm PN16; Direct Burried Gate valve 40 mm PN16; Pressure–compensating bubblers 110 Lit/Hr; Flushing Bronze gate valve dia 1.5" inside PVC box; Air release valve 1.5" inside PVC box; Extra flexible pressure compensating on surface inline dripline`s, O.D. is 16.1 mm; Electrical Solenoid Valve ( 1.5") inside PVC box; Electrical Solenoid Valve ( 2") inside PVC box; Quick coupling valve 1" inside a round valve box 10" size with a manual gate valve, hose swivel and key with all accessories; Advanced Irrigation controller subject to client approval, can connect with Centarl Control system and cabable to integrate with Smart City systems,BMS or Scada system ,Can record the real flow rate per stations; Decoder cables 12 AWG between valves and controllers, The cables shall be pulled through 32? UPVC conduit and inspection 10" round valve box every 100 meters, as per standard specification and drawings; Preparing the irrigation program for the entire system and providing technical services for monitoring and controlling the central irrigation systems by linking the controller with the Main Program System (by GSM).; physical units [356.42 h] | NLI |

| ID | WBS | Activity | Duration | Start | Finish | Predecessors | Total float | Free float | Resources | 01- Network |
| --- | --- | --- | --- | --- | --- | --- | --- | --- | --- | --- |
|  | MV | **Medium Voltage Network** |  | 2026-12-02 | 2027-02-16 |  |  |  |  |  |
|  | PO | **Issuance of Purchase Orders** |  | 2026-12-02 | 2026-12-08 |  |  |  |  |  |
| PRO-MV-PO-100 |  | Issuance of Purchase Order for Medium Voltage Materials of Medium Voltage Network | 6d | 2026-12-02 | 2026-12-08 | ENG-MT-MV-ML-A-100, ENG-SH-MV-A-110, PRO-IR-PO-110, ENG-MS-MV-A-110 | -104d | 0d | physical units [101.83 h] | NLI |
|  | MF | **Manufacturing of Material** |  | 2026-12-09 | 2027-01-02 |  |  |  |  |  |
| PRO-MV-MF-100 |  | Manufacturing of Medium Voltage Materials for Medium Voltage Network | 21d | 2026-12-09 | 2027-01-02 | PRO-MV-PO-100 | -81d | 0d | physical units [356.42 h] | NLI |
|  | 1DL | **1st Material Delivery & Site Inspection** |  | 2027-01-03 | 2027-01-10 |  |  |  |  |  |
| PRO-MV-1DL-100 |  | 1ST Material Delivery for Medium Voltage Materials of Medium Voltage Network | 7d | 2027-01-03 | 2027-01-10 | PRO-MV-MF-100 | -81d | 0d | physical units [118.81 h] | NLI |
|  | DL | **Material Delivery & Site Inspection** |  | 2027-01-24 | 2027-02-16 |  |  |  |  |  |
| PRO-MV-DL-100 |  | Material Delivery & Site Inspection of Medium Voltage Materials for Medium Voltage Network | 21d | 2027-01-24 | 2027-02-16 | PRO-MV-1DL-100, PRO-R25-IR-DL-110 FF | -87d | 4d | Excavation for Trench size 40cm wide and 80cm deep (for 1 cable); Excavation for Trench Size 60cm wide and 80cm deep (for 2 cables); Excavation for Trench Size 90cm wide and 80cm deep (for 3 cables); Excavation for Trench Size 180cm wide and 80cm deep (for 6 cables); Excavation for Trench Size 210 cm wide and 80cm deep (for 7 cables); Excavation for Trench Size 240cm wide and 80cm deep (for 8 cables); Duct bank for (33) cables; Duct bank for (21) cables; Duct bank for (15) cables; HV Cable Road Crossing; physical units [356.42 h] | NLI |
|  | LV | **Low Voltage Network** |  | 2026-11-09 | 2027-04-19 |  |  |  |  |  |
|  | PO | **Issuance of Purchase Orders** |  | 2026-11-09 | 2026-12-10 |  |  |  |  |  |
|  | 1 | **Main Low Voltage Cables Works** |  | 2026-11-09 | 2026-11-16 |  |  |  |  |  |
| PRO-LV-ML-PO-100 |  | Issuance of Purchase Order for Main Low Voltage Cables of Low Voltage Network | 7d | 2026-11-09 | 2026-11-16 | PRO-LV-ML-A-100, ENG-SH-LV-A-120, ENG-MS-MV-A-120 | -116d | 0d | physical units [118.81 h] | NLI |
|  | 2 | **Service Low Voltage Cables Works** |  | 2026-11-09 | 2026-11-16 |  |  |  |  |  |
| PRO-LV-HC-PO-100 |  | Issuance of Purchase Order for Service Low Voltage Cables of Low Voltage Network | 7d | 2026-11-09 | 2026-11-16 | PRO-LV-HC-A-100, ENG-SH-LV-A-120 | -115d | 0d | physical units [118.81 h] | NLI |
|  | 3 | **Distribution Pillar Works** |  | 2026-11-17 | 2026-12-02 |  |  |  |  |  |
| PRO-LV-DP-PO-100 |  | Issuance of Purchase Order for Distribution Pillars of Low Voltage Network | 7d | 2026-11-17 | 2026-11-24 | PRO-LV-DP-A-100, ENG-SH-LV-A-120, PRO-LV-HC-PO-100 | -115d | 0d | physical units [118.81 h] | NLI |
| PRO-LV-DP-PO-110 |  | Issuance of Purchase Order for Low Voltage Earthing of Low Voltage Network | 7d | 2026-11-25 | 2026-12-02 | PRO-LV-DP-A-110, ENG-SH-LV-A-120, PRO-LV-DP-PO-100 | -115d | 0d | physical units [118.81 h] | NLI |
|  | 4 | **Termination and Testing Works** |  | 2026-12-03 | 2026-12-10 |  |  |  |  |  |
| PRO-LV-TT-PO-100 |  | Issuance of Purchase Order for Cable Lugs of Low Voltage Network | 7d | 2026-12-03 | 2026-12-10 | PRO-LV-TT-A-100, ENG-SH-LV-A-120, PRO-LV-DP-PO-110 | -115d | 0d | physical units [118.81 h] | NLI |
|  | MF | **Manufacturing of Material** |  | 2026-11-17 | 2027-03-02 |  |  |  |  |  |
|  | 1 | **Main Low Voltage Cables Works** |  | 2026-11-17 | 2026-12-21 |  |  |  |  |  |
| PRO-LV-ML-MF-100 |  | Manufacturing of Main Low Voltage Cables for Low Voltage Network | 30d | 2026-11-17 | 2026-12-21 | PRO-LV-ML-PO-100 | -116d | 0d | physical units [509.17 h] | NLI |
|  | 2 | **Service Low Voltage Cables Works** |  | 2026-11-17 | 2026-12-21 |  |  |  |  |  |
| PRO-LV-HC-MF-100 |  | Manufacturing of Service Low Voltage Cables for Low Voltage Network | 30d | 2026-11-17 | 2026-12-21 | PRO-LV-HC-PO-100, PRO-LV-ML-MF-100 SS | -94d | 7d | physical units [509.17 h] | NLI |

| ID | WBS | Activity | Duration | Start | Finish | Predecessors | Total float | Free float | Resources | 01- Network |
| --- | --- | --- | --- | --- | --- | --- | --- | --- | --- | --- |
|  | 3 | **Distribution Pillar Works** |  | 2026-11-25 | 2027-01-18 |  |  |  |  |  |
| PRO-LV-DP-MF-100 |  | Manufacturing of Distribution Pillars for Low Voltage Network | 40d | 2026-11-25 | 2027-01-10 | PRO-LV-DP-PO-100, PRO-LV-HC-MF-100 SS | -101d | 7d | physical units [678.89 h] | NLI |
| PRO-LV-DP-MF-110 |  | Manufacturing of Low Voltage Earthing for Low Voltage Network | 40d | 2026-12-03 | 2027-01-18 | PRO-LV-DP-PO-110, PRO-LV-DP-MF-100 SS | -108d | 7d | physical units [678.89 h] | NLI |
|  | 4 | **Termination and Testing Works** |  | 2026-12-12 | 2027-03-02 |  |  |  |  |  |
| PRO-LV-TT-MF-100 |  | Manufacturing of Cable Lugs for Low Voltage Network | 70d | 2026-12-12 | 2027-03-02 | PRO-LV-TT-PO-100, PRO-LV-DP-MF-110 SS | -115d | 1d | physical units [1188.06 h] | NLI |
|  | 1DL | **1st Delivery of Material to Site** |  | 2026-12-22 | 2027-03-03 |  |  |  |  |  |
|  | 1 | **Main Low Voltage Cables Works** |  | 2026-12-22 | 2027-01-30 |  |  |  |  |  |
| PRO-LV-ML-1DL-100 |  | 1ST Material Delivery for Main Low Voltage Cables of Low Voltage Network | 34d | 2026-12-22 | 2027-01-30 | PRO-LV-ML-MF-100 | -116d | 0d | physical units [577.06 h] | NLI |
|  | 2 | **Service Low Voltage Cables Works** |  | 2027-01-31 | 2027-02-07 |  |  |  |  |  |
| PRO-LV-HC-1DL-100 |  | 1ST Material Delivery for Service Low Voltage Cables of Low Voltage Network | 7d | 2027-01-31 | 2027-02-07 | PRO-LV-HC-MF-100, PRO-LV-ML-1DL-100 | -116d | 0d | physical units [118.81 h] | NLI |
|  | 3 | **Distribution Pillar Works** |  | 2027-02-08 | 2027-02-23 |  |  |  |  |  |
| PRO-LV-DP-1DL-100 |  | 1ST Material Delivery for Distribution Pillars of Low Voltage Network | 7d | 2027-02-08 | 2027-02-15 | PRO-LV-DP-MF-100, PRO-LV-HC-1DL-100 | -116d | 0d | physical units [118.81 h] | NLI |
| PRO-LV-DP-1DL-110 |  | 1ST Material Delivery for Low Voltage Earthing of Low Voltage Network | 7d | 2027-02-16 | 2027-02-23 | PRO-LV-DP-MF-110, PRO-LV-DP-1DL-100 | -116d | 0d | physical units [118.81 h] | NLI |
|  | 4 | **Termination and Testing Works** |  | 2027-02-24 | 2027-03-03 |  |  |  |  |  |
| PRO-LV-TT-1DL-100 |  | 1ST Material Delivery for Cable Lugs of Low Voltage Network | 7d | 2027-02-24 | 2027-03-03 | PRO-LV-TT-MF-100 SS, PRO-LV-TT-MF-100 FF, PRO-LV-DP-1DL-110 | -116d | 0d | physical units [118.81 h] | NLI |
|  | DL | **Delivery of Material to Site** |  | 2027-01-31 | 2027-04-19 |  |  |  |  |  |
|  | 1 | **Main Low Voltage Cables Works** |  | 2027-01-31 | 2027-02-07 |  |  |  |  |  |
| PRO-LV-ML-DL-100 |  | Material Delivery of Main Low Voltage Cables for Low Voltage Network | 7d | 2027-01-31 | 2027-02-07 | PRO-LV-ML-1DL-100 | -108d | 0d | Road crossing ducts, 2 ways (2 x 150mm HDPE); Road crossing ducts, 2 ways (2 x 110mm UPVC); Road crossing ducts, 3 ways (3 x 110mm UPVC); 4C-300mm2 CU/XLPE / PVC ARMORED CABLE; 4C-240mm2 CU/XLPE / PVC ARMORED CABLE; 4C-185mm2 CU/XLPE / PVC ARMORED CABLE; 4C-50mm2 CU/XLPE / PVC ARMORED CABLE; 4C-16mm2 CU/XLPE / PVC ARMORED CABLE; 4C-16MM2 CU/XLPE / PVC CABLE; 1Cx150sq.mm2,Cu, PVC wire; 1Cx120sq.mm2,Cu, PVC wire; 1Cx95sq.mm,Cu, PVC wire; 1Cx70sq.mm2,Cu, PVC wire; 1Cx25sq.mm2,Cu, PVC wire; 1Cx16sq.mm2,Cu, PVC wire; 1Cx10sq.mm2,Cu, PVC wire; physical units [118.81 h] | NLI |
|  | 2 | **Service Low Voltage Cables Works** |  | 2027-02-08 | 2027-03-03 |  |  |  |  |  |
| PRO-LV-HC-DL-100 |  | Material Delivery of Service Low Voltage Cables for Low Voltage Network | 21d | 2027-02-08 | 2027-03-03 | PRO-LV-HC-1DL-100, PRO-LV-ML-DL-100 | -108d | 0d | Road crossing ducts, 2 ways (2 x 150mm HDPE); Road crossing ducts, 2 ways (2 x 110mm UPVC); Road crossing ducts, 3 ways (3 x 110mm UPVC); 4C-300mm2 CU/XLPE / PVC ARMORED CABLE; 4C-240mm2 CU/XLPE / PVC ARMORED CABLE; 4C-185mm2 CU/XLPE / PVC ARMORED CABLE; 4C-50mm2 CU/XLPE / PVC ARMORED CABLE; 4C-16mm2 CU/XLPE / PVC ARMORED CABLE; 4C-16MM2 CU/XLPE / PVC CABLE; 1Cx150sq.mm2,Cu, PVC wire; 1Cx120sq.mm2,Cu, PVC wire; 1Cx95sq.mm,Cu, PVC wire; 1Cx70sq.mm2,Cu, PVC wire; 1Cx25sq.mm2,Cu, PVC wire; 1Cx16sq.mm2,Cu, PVC wire; 1Cx10sq.mm2,Cu, PVC wire; physical units [356.42 h] | NLI |
|  | 3 | **Distribution Pillar Works** |  | 2027-03-03 | 2027-03-29 |  |  |  |  |  |
| PRO-LV-DP-DL-120 |  | Material Delivery of Low Voltage Earthing for Low Voltage Network | 20d | 2027-03-03 | 2027-03-29 | PRO-LV-DP-1DL-110, PRO-LV-DP-DL-100 FF | -108d | 0d | Road crossing ducts, 2 ways (2 x 150mm HDPE); Road crossing ducts, 2 ways (2 x 110mm UPVC); Road crossing ducts, 3 ways (3 x 110mm UPVC); 4C-300mm2 CU/XLPE / PVC ARMORED CABLE; 4C-240mm2 CU/XLPE / PVC ARMORED CABLE; 4C-185mm2 CU/XLPE / PVC ARMORED CABLE; 4C-50mm2 CU/XLPE / PVC ARMORED CABLE; 4C-16mm2 CU/XLPE / PVC ARMORED CABLE; 4C-16MM2 CU/XLPE / PVC CABLE; 1Cx150sq.mm2,Cu, PVC wire; 1Cx120sq.mm2,Cu, PVC wire; 1Cx95sq.mm,Cu, PVC wire; 1Cx70sq.mm2,Cu, PVC wire; 1Cx25sq.mm2,Cu, PVC wire; 1Cx16sq.mm2,Cu, PVC wire; 1Cx10sq.mm2,Cu, PVC wire; physical units [339.45 h] | NLI |
| PRO-LV-DP-DL-100 |  | Material Delivery of Distribution Pillars for Low Voltage Network | 19d | 2027-03-04 | 2027-03-29 | PRO-LV-DP-1DL-100, PRO-LV-HC-DL-100 | -108d | 0d | Supply and installation of KWH meter mounting frame including concrete block for installation of KWH meter according to the standards and specifications of SEC.; physical units [322.47 h] | NLI |
|  | 4 | **Termination and Testing Works** |  | 2027-03-30 | 2027-04-19 |  |  |  |  |  |
| PRO-LV-TT-DL-100 |  | Material Delivery of Cable Lugs for Low Voltage Network | 18d | 2027-03-30 | 2027-04-19 | PRO-LV-TT-1DL-100, PRO-LV-DP-DL-120 | -85d | 0d | Road crossing ducts, 2 ways (2 x 150mm HDPE); Road crossing ducts, 2 ways (2 x 110mm UPVC); Road crossing ducts, 3 ways (3 x 110mm UPVC); 4C-300mm2 CU/XLPE / PVC ARMORED CABLE; 4C-240mm2 CU/XLPE / PVC ARMORED CABLE; 4C-185mm2 CU/XLPE / PVC ARMORED CABLE; 4C-50mm2 CU/XLPE / PVC ARMORED CABLE; 4C-16mm2 CU/XLPE / PVC ARMORED CABLE; 4C-16MM2 CU/XLPE / PVC CABLE; 1Cx150sq.mm2,Cu, PVC wire; 1Cx120sq.mm2,Cu, PVC wire; 1Cx95sq.mm,Cu, PVC wire; 1Cx70sq.mm2,Cu, PVC wire; 1Cx25sq.mm2,Cu, PVC wire; 1Cx16sq.mm2,Cu, PVC wire; 1Cx10sq.mm2,Cu, PVC wire; physical units [305.5 h] | NLI |

| ID | WBS | Activity | Duration | Start | Finish | Predecessors | Complete | Planned start | Planned finish | Total float | Free float | Resources | 01- Network |
| --- | --- | --- | --- | --- | --- | --- | --- | --- | --- | --- | --- | --- | --- |
|  | SL | **Street Lighting Network** |  | 2026-08-01 | 2027-05-03 |  |  |  |  |  |  |  |  |
|  | PO | **Issuance of Purchase Orders** |  | 2026-08-01 | 2026-08-04 |  |  |  |  |  |  |  |  |
|  | 1 | **Cabling Works** |  | 2026-08-01 | 2026-08-04 |  |  |  |  |  |  |  |  |
| PRO-SL-PO-100 |  | Issuance of Purchase Order for Lighting Cables of Street Lighting Network | 5d | 2026-08-01 A | 2026-08-04 A | ENG-MT-SL-ML-A-100, ENG-SH-SL-A-110, PRO-SW-PO-120, PRO-MV-PO-100 SS, ENG-MS-SL-A-110 | 100% | 2026-12-02 | 2026-12-07 |  |  | physical units [84.86 h] | NLI |
|  | 2 | **Lighting Poles Works** |  | 2026-08-01 | 2026-08-04 |  |  |  |  |  |  |  |  |
| PRO-SL-PO-110 |  | Issuance of Purchase Order for Lighting Poles Foundations of Street Lighting Network | 5d | 2026-08-01 A | 2026-08-04 A | ENG-MT-SL-S-100, ENG-MT-SL-A-100, ENG-SH-SL-A-110, PRO-SL-PO-100 SS | 100% | 2026-12-02 | 2026-12-07 |  |  | physical units [84.86 h] | NLI |
| PRO-SL-PO-120 |  | Issuance of Purchase Order for Lighting Poles of Street Lighting Network | 5d | 2026-08-01 A | 2026-08-04 A | ENG-MT-SL-S-110, ENG-MT-SL-A-110, ENG-SH-SL-A-110, PRO-SL-PO-110 SS | 100% | 2026-12-02 | 2026-12-07 |  |  | physical units [84.86 h] | NLI |
| PRO-SL-PO-140 |  | Issuance of Purchase Order for Lighting Fixtures of Street Lighting Network | 5d | 2026-08-01 A | 2026-08-04 A | ENG-MT-SL-S-120, ENG-MT-SL-A-120, ENG-SH-SL-A-110, PRO-SL-PO-120 SS | 100% | 2026-12-02 | 2026-12-07 |  |  | physical units [84.86 h] | NLI |
|  | 3 | **Distribution Panel Board** |  | 2026-08-01 | 2026-08-04 |  |  |  |  |  |  |  |  |
| PRO-SL-PO-160 |  | Issuance of Purchase Order for Distrubution Panel Boards of Street Lighting Network | 6d | 2026-08-01 A | 2026-08-04 A | ENG-MT-SL-DB-S-100, ENG-MT-SL-DB-A-100, ENG-SH-SL-A-110, PRO-SL-PO-140 SS | 100% | 2026-12-02 | 2026-12-08 |  |  | physical units [101.83 h] | NLI |
|  | 4 | **Earthing System Works** |  | 2026-08-01 | 2026-08-04 |  |  |  |  |  |  |  |  |
| PRO-SL-PO-150 |  | Issuance of Purchase Order for Lighting Earthing of Street Lighting Network | 6d | 2026-08-01 A | 2026-08-04 A | ENG-MT-SL-ES-S-100, ENG-MT-SL-ES-A-100, ENG-SH-SL-A-110, PRO-SL-PO-170 | 100% | 2026-12-15 | 2026-12-21 |  |  | physical units [101.83 h] | NLI |
|  | 5 | **Termination and Testing Works** |  | 2026-08-01 | 2026-08-04 |  |  |  |  |  |  |  |  |
| PRO-SL-PO-130 |  | Issuance of Purchase Order for Fuse Boxes of Street Lighting Network | 6d | 2026-08-01 A | 2026-08-04 A | ENG-MT-SL-TF-S-100, ENG-MT-SL-TF-A-100, ENG-SH-SL-A-110, PRO-SL-PO-160 | 100% | 2026-12-09 | 2026-12-15 |  |  | physical units [101.83 h] | NLI |
| PRO-SL-PO-170 |  | Issuance of Purchase Order for Cable Lugs of Street Lighting Network | 6d | 2026-08-01 A | 2026-08-04 A | PRO-SL-PO-140, ENG-MT-SL-TF-S-110, ENG-MT-SL-TF-A-110, ENG-SH-SL-A-110 | 100% | 2026-12-08 | 2026-12-14 |  |  | physical units [101.83 h] | NLI |
|  | MF | **Manufacturing of Material** |  | 2026-12-02 | 2027-03-21 |  |  |  |  |  |  |  |  |
|  | 1 | **Cabling Works** |  | 2026-12-02 | 2026-12-24 |  |  |  |  |  |  |  |  |
| PRO-SL-MF-100 |  | Manufacturing of Lighting Cables for Street Lighting Network | 20d | 2026-12-02 | 2026-12-24 | PRO-SL-PO-100 |  |  |  | -104d | 0d | physical units [339.45 h] | NLI |
|  | 2 | **Lighting Poles Works** |  | 2026-12-26 | 2027-01-18 |  |  |  |  |  |  |  |  |
| PRO-SL-MF-110 |  | Manufacturing of Lighting Poles Foundations for Street Lighting Network | 21d | 2026-12-26 | 2027-01-18 | PRO-SL-PO-110, PRO-SL-MF-100 |  |  |  | -104d | 0d | physical units [356.42 h] | NLI |
| PRO-SL-MF-120 |  | Manufacturing of Lighting Poles for Street Lighting Network | 21d | 2026-12-26 | 2027-01-18 | PRO-SL-PO-120, PRO-SL-MF-110 SS |  |  |  | -98d | 0d | physical units [356.42 h] | NLI |
| PRO-SL-MF-140 |  | Manufacturing of Lighting Fixtures for Street Lighting Network | 21d | 2026-12-26 | 2027-01-18 | PRO-SL-PO-140, PRO-SL-MF-120 SS |  |  |  | -98d | 0d | physical units [356.42 h] | NLI |
|  | 3 | **Distribution Panel Board** |  | 2027-01-19 | 2027-02-22 |  |  |  |  |  |  |  |  |
| PRO-SL-MF-160 |  | Manufacturing of Distrubution Panel Boards for Street Lighting Network | 30d | 2027-01-19 | 2027-02-22 | PRO-SL-PO-160, PRO-SL-MF-140 |  |  |  | -98d | 0d | physical units [509.17 h] | NLI |

| ID | WBS | Activity | Duration | Start | Finish | Predecessors | Total float | Free float | Resources | 01- Network |
| --- | --- | --- | --- | --- | --- | --- | --- | --- | --- | --- |
|  | 4 | **Earthing System Works** |  | 2026-12-02 | 2027-01-17 |  |  |  |  |  |
| PRO-SL-MF-150 |  | Manufacturing of Lighting Earthing for Street Lighting Network | 40d | 2026-12-02 | 2027-01-17 | PRO-SL-PO-150 | -88d | 13d | physical units [678.89 h] | NLI |
|  | 5 | **Termination and Testing Works** |  | 2026-12-02 | 2027-03-21 |  |  |  |  |  |
| PRO-SL-MF-130 |  | Manufacturing of Fuse Boxes for Street Lighting Network | 70d | 2026-12-02 | 2027-02-21 | PRO-SL-PO-130 | -77d | 0d | physical units [1188.06 h] | NLI |
| PRO-SL-MF-170 |  | Manufacturing of Cable Lugs for Street Lighting Network | 21d | 2027-02-22 | 2027-03-21 | PRO-SL-PO-170, PRO-SL-MF-130 | -77d | 0d | physical units [356.42 h] | NLI |
|  | 1DL | **1st Material Delivery & Site Inspection** |  | 2026-12-26 | 2027-04-04 |  |  |  |  |  |
|  | 1 | **Cabling Works** |  | 2026-12-26 | 2026-12-31 |  |  |  |  |  |
| PRO-SL-1DL-100 |  | 1ST Material Delivery for Lighting Cables of Street Lighting Network | 6d | 2026-12-26 | 2026-12-31 | PRO-SL-MF-100 | -89d | 0d | physical units [101.83 h] | NLI |
|  | 2 | **Lighting Poles Works** |  | 2027-01-19 | 2027-02-08 |  |  |  |  |  |
| PRO-SL-1DL-110 |  | 1ST Material Delivery for Lighting Poles Foundations of Street Lighting Network | 6d | 2027-01-19 | 2027-01-25 | PRO-SL-MF-110, PRO-SL-1DL-100 | -104d | 0d | physical units [101.83 h] | NLI |
| PRO-SL-1DL-120 |  | 1ST Material Delivery for Lighting Poles of Street Lighting Network | 6d | 2027-01-26 | 2027-02-01 | PRO-SL-MF-120, PRO-SL-1DL-110 | -101d | 0d | physical units [101.83 h] | NLI |
| PRO-SL-1DL-140 |  | 1ST Material Delivery for Lighting Fixtures of Street Lighting Network | 6d | 2027-02-02 | 2027-02-08 | PRO-SL-MF-150, PRO-SL-MF-140, PRO-SL-1DL-120 | -101d | 3d | physical units [101.83 h] | NLI |
|  | 3 | **Distribution Panel Board** |  | 2027-02-23 | 2027-03-01 |  |  |  |  |  |
| PRO-SL-1DL-160 |  | 1ST Material Delivery for Distrubution Panel Boards of Street Lighting Network | 6d | 2027-02-23 | 2027-03-01 | PRO-SL-MF-160, PRO-SL-1DL-140 | -98d | 0d | physical units [101.83 h] | NLI |
|  | 5 | **Termination and Testing Works** |  | 2027-03-02 | 2027-03-28 |  |  |  |  |  |
| PRO-SL-1DL-130 |  | 1ST Material Delivery for Fuse Boxes of Street Lighting Network | 6d | 2027-03-02 | 2027-03-08 | PRO-SL-MF-130, PRO-SL-1DL-160 | -83d | 8d | physical units [101.83 h] | NLI |
| PRO-SL-1DL-170 |  | 1ST Material Delivery for Cable Lugs of Street Lighting Network | 6d | 2027-03-22 | 2027-03-28 | PRO-RD-MF-160, PRO-SL-MF-170, PRO-SL-1DL-130 | -77d | 0d | physical units [101.83 h] | NLI |
|  | 4 | **Earthing System Works** |  | 2027-03-29 | 2027-04-04 |  |  |  |  |  |
| PRO-SL-1DL-150 |  | 1ST Material Delivery for Lighting Earthing of Street Lighting Network | 6d | 2027-03-29 | 2027-04-04 | PRO-SL-MF-150 FF, PRO-SL-MF-150 SS, PRO-SL-1DL-170 | -77d | 10d | physical units [101.83 h] | NLI |
|  | DL | **Material Delivery & Site Inspection** |  | 2027-01-02 | 2027-05-03 |  |  |  |  |  |
|  | 1 | **Cabling Works** |  | 2027-01-02 | 2027-01-25 |  |  |  |  |  |
| PRO-R25-SL-DL-100 |  | Material Delivery & Site Inspection of Lighting Cables for Street Lighting Network | 21d | 2027-01-02 | 2027-01-25 | PRO-CTV-PO-100, PRO-SL-1DL-100 | -89d | 15d | Lighting poles with 1 arm, height of (12) meters, including the power distribution box, cables, and RCC foundation.; Lighting poles with 2 arms, height of (12) meters, including the power distribution box, cables, and RCC foundation.; physical units [356.42 h] | NLI |
|  | 2 | **Lighting Poles Works** |  | 2027-01-19 | 2027-03-08 |  |  |  |  |  |
| PRO-R25-SL-DL-110 |  | Material Delivery & Site Inspection of Lighting Poles Foundations for Street Lighting Network | 21d | 2027-01-19 | 2027-02-11 | PRO-SL-1DL-110 SS, PRO-R25-SL-DL-100 SS | -104d | 0d | Lighting poles with 1 arm, height of (12) meters, including the power distribution box, cables, and RCC foundation.; Lighting poles with 2 arms, height of (12) meters, including the power distribution box, cables, and RCC foundation.; physical units [356.42 h] | NLI |
| PRO-R25-SL-DL-120 |  | Material Delivery & Site Inspection of Lighting Poles for Street Lighting Network | 21d | 2027-02-13 | 2027-03-08 | PRO-SL-1DL-120, PRO-R25-SL-DL-110 | -104d | 0d | Lighting poles with 1 arm, height of (12) meters, including the power distribution box, cables, and RCC foundation.; Lighting poles with 2 arms, height of (12) meters, including the power distribution box, cables, and RCC foundation.; physical units [356.42 h] | NLI |
| PRO-R25-SL-DL-140 |  | Material Delivery & Site Inspection of Lighting Fixtures for Street Lighting Network | 21d | 2027-02-13 | 2027-03-08 | PRO-SL-1DL-140, PRO-R25-SL-DL-120 SS | -104d | 3d | Street Lighting( LED) Luminaire of Output ? 20,965 lumen complete with control gear and lamp, (129.1) WATT.; physical units [356.42 h] | NLI |

| ID | WBS | Activity | Duration | Start | Finish | Predecessors | Total float | Free float | Resources | 01- Network |
| --- | --- | --- | --- | --- | --- | --- | --- | --- | --- | --- |
|  | 3 | **Distribution Panel Board** |  | 2027-03-16 | 2027-04-08 |  |  |  |  |  |
| PRO-R25-SL-DL-160 |  | Material Delivery & Site Inspection of Distrubution Panel Boards for Street Lighting Network | 21d | 2027-03-16 | 2027-04-08 | PRO-R25-IR-DL-150, PRO-SL-1DL-160, PRO-R25-SL-DL-140 | -107d | 0d | Street Lighting panels LCP (01); physical units [356.42 h] | NLI |
|  | 4 | **Termination and Testing Works** |  | 2027-04-10 | 2027-05-03 |  |  |  |  |  |
| PRO-R25-SL-DL-130 |  | Material Delivery & Site Inspection of Fuse Boxes for Street Lighting Network | 21d | 2027-04-10 | 2027-05-03 | PRO-SL-1DL-130, PRO-R25-SL-DL-160 | -107d | 0d | Lighting poles with 1 arm, height of (12) meters, including the power distribution box, cables, and RCC foundation.; Lighting poles with 2 arms, height of (12) meters, including the power distribution box, cables, and RCC foundation.; physical units [356.42 h] | NLI |
| PRO-R25-SL-DL-170 |  | Material Delivery & Site Inspection of Cable Lugs for Street Lighting Network | 21d | 2027-04-10 | 2027-05-03 | PRO-SL-1DL-170 SS, PRO-R25-SL-DL-130 SS | -87d | 0d | Lighting poles with 1 arm, height of (12) meters, including the power distribution box, cables, and RCC foundation.; Lighting poles with 2 arms, height of (12) meters, including the power distribution box, cables, and RCC foundation.; physical units [356.42 h] | NLI |
|  | 5 | **Earthing System Works** |  | 2027-04-10 | 2027-05-03 |  |  |  |  |  |
| PRO-R25-SL-DL-150 |  | Material Delivery & Site Inspection of Lighting Earthing for Street Lighting Network | 21d | 2027-04-10 | 2027-05-03 | PRO-SL-1DL-150 FF, PRO-SL-1DL-150 SS, PRO-R25-SL-DL-170 SS | -87d | 0d | Including earthing of lighting poles, masts, feeder pillars, unit substations and LV feeders.; physical units [356.42 h] | NLI |
|  | TE | **Telecom and Light Current Network** |  | 2026-12-02 | 2027-03-23 |  |  |  |  |  |
|  | PO | **Issuance of Purchase Orders** |  | 2026-12-02 | 2026-12-24 |  |  |  |  |  |
|  | 1 | **Ducts Works** |  | 2026-12-02 | 2026-12-09 |  |  |  |  |  |
| PRO-TE-PO-100 |  | Issuance of Purchase Order for Ducts forTelecom Network | 7d | 2026-12-02 | 2026-12-09 | PRO-SL-PO-170, ENG-MT-TE-A-100, ENG-SH-TE-A-110, ENG-MS-TE-A-110 | -83d | 0d | physical units [118.81 h] | NLI |
|  | 3 | **Manholes Works** |  | 2026-12-02 | 2026-12-09 |  |  |  |  |  |
| PRO-TE-PO-110 |  | Issuance of Purchase Order for Manholes forTelecom Network | 7d | 2026-12-02 | 2026-12-09 | ENG-MT-TE-A-110, ENG-SH-TE-A-110, PRO-TE-PO-100 SS | -83d | 0d | physical units [118.81 h] | NLI |
|  | 2 | **CCTV, Telephone, MSN, ACs System Works** |  | 2026-12-02 | 2026-12-24 |  |  |  |  |  |
| PRO-CTV-PO-100 |  | Issuance of Purchase Order for Civil and Finishes Works of CCTV Complete System | 20d | 2026-12-02 | 2026-12-24 | ENG-MT-CTV-A-100, ENG-SH-MSN-A-120, ENG-SH-CTV-A-110, PRO-TE-PO-110 SS, ENG-MS-CTV-A-110 | -83d | 6d | physical units [339.45 h] | NLI |
|  | MF | **Manufacturing of Material** |  | 2026-12-10 | 2027-03-01 |  |  |  |  |  |
|  | 1 | **Ducts Works** |  | 2026-12-10 | 2027-01-02 |  |  |  |  |  |
| PRO-TE-MF-100 |  | Manufacturing of Ducts for Telecom Network | 20d | 2026-12-10 | 2027-01-02 | PRO-TE-PO-100 | -75d | 0d | physical units [339.45 h] | NLI |
|  | 3 | **Manholes Works** |  | 2027-01-03 | 2027-01-25 |  |  |  |  |  |
| PRO-TE-MF-110 |  | Manufacturing of Manholes for Telecom Network | 20d | 2027-01-03 | 2027-01-25 | PRO-TE-PO-110, PRO-TE-MF-100 | -75d | 0d | physical units [339.45 h] | NLI |
|  | 2 | **CCTV, Telephone, MSN, ACs System Works** |  | 2027-01-26 | 2027-03-01 |  |  |  |  |  |
| PRO-CTV-MF-100 |  | Manufacturing of Civil and Finishes Works for CCTV Complete System | 30d | 2027-01-26 | 2027-03-01 | PRO-CTV-PO-100, PRO-TE-MF-110 | -60d | 0d | physical units [509.17 h] | NLI |
|  | 1DL | **1st Material Delivery & Site Inspection** |  | 2027-01-03 | 2027-03-08 |  |  |  |  |  |
|  | 1 | **Ducts Works** |  | 2027-01-03 | 2027-01-09 |  |  |  |  |  |
| PRO-TE-1DL-100 |  | 1ST Material Delivery for Ducts of Telecom Network | 6d | 2027-01-03 | 2027-01-09 | PRO-TE-MF-100 | -67d | 0d | physical units [101.83 h] | NLI |

| ID | WBS | Activity | Duration | Start | Finish | Predecessors | Complete | Planned start | Planned finish | Total float | Free float | Resources | 01- Network |
| --- | --- | --- | --- | --- | --- | --- | --- | --- | --- | --- | --- | --- | --- |
|  | 3 | **Manholes Works** |  | 2027-01-26 | 2027-02-01 |  |  |  |  |  |  |  |  |
| PRO-TE-1DL-110 |  | 1ST Material Delivery for Manholes of Telecom Network | 6d | 2027-01-26 | 2027-02-01 | PRO-TE-MF-110, PRO-TE-1DL-100 |  |  |  | -75d | 0d | physical units [101.83 h] | NLI |
|  | 2 | **CCTV, Telephone, MSN, ACs System Works** |  | 2027-03-02 | 2027-03-08 |  |  |  |  |  |  |  |  |
| PRO-CTV-1DL-100 |  | 1ST Material Delivery for Civil and Finishes Works of CCTV Complete System | 6d | 2027-03-02 | 2027-03-08 | PRO-CTV-MF-100, PRO-TE-1DL-110 |  |  |  | -60d | 0d | physical units [101.83 h] | NLI |
|  | DL | **Material Delivery & Site Inspection** |  | 2027-01-10 | 2027-03-23 |  |  |  |  |  |  |  |  |
|  | 1 | **Ducts Works** |  | 2027-01-10 | 2027-01-26 |  |  |  |  |  |  |  |  |
| PRO-R25-TE-DL-100 |  | Material Delivery & Site Inspection for Ducts of Telecom Network | 15d | 2027-01-10 | 2027-01-26 | PRO-TE-1DL-100 |  |  |  | -67d | 5d | 2-ways ducts, 32mm diameter; 2x3-ways ducts, 50mm diameter; 8-ways ducts, 6 x 160mm & 2 x 100mm; 2 PVC ducts 150x200 mm (60mm diameter); 4 PVC ducts 600x150 mm (60mm diameter); 8 PVC ducts 1000x300 mm (60mm diameter); 6 PVC ducts 600x800 mm (60mm diameter); physical units [254.58 h] | NLI |
|  | 3 | **Manholes Works** |  | 2027-02-02 | 2027-02-18 |  |  |  |  |  |  |  |  |
| PRO-R25-TE-DL-110 |  | Material Delivery & Site Inspection of Manholes for Telecom Network | 15d | 2027-02-02 | 2027-02-18 | PRO-R25-TE-DL-100, PRO-TE-1DL-110 |  |  |  | -72d | 3d | Manhole Type 2 (1600 x 1600 x 2000); Manhole Type 3 (1200 x 1200 x 2000); Manhole Type 1 (800 x 600 x 1200); physical units [254.58 h] | NLI |
|  | 2 | **CCTV, Telephone, MSN, ACs System Works** |  | 2027-03-13 | 2027-03-23 |  |  |  |  |  |  |  |  |
| PRO-R25-CTV-DL-100 |  | Material Delivery & Site Inspection of for Civil and Finishes Works of CCTV Complete System | 10d | 2027-03-13 | 2027-03-23 | PRO-CTV-1DL-100, PRO-R25-TE-DL-110 |  |  |  | -60d | 21d | NVR Server with RAID (5, 6 or 10) to record all cameras storage 80TB with all hardware / software / licenses etc.; VMS Server with RAID (5, 6 or 10) complete Hardware / Software with one Color Laser Printer and all associated accessories for central management.; Licenses for Cameras, Workstations and Keyboards; Work Station (MMI with two monitors each, for Monitoring for CCTV & ACS); Keyboard with joystick for CCTV with all accessories as per specification; Pole mounted IP( PoE) Fixed camera, 5MP,IP 66, IR illumination, 3-8mm varifocal, auto iris lens type; Wall mounted IP( PoE) Fixed camera, 5MP,IP 66, IR illumination, 3-8mm varifocal, auto iris lens type; 5MP Dome camera ceiling Mounted IP (PoE) indoor; 5MP PTZ Multi Sensor Camera IP(PoE) 360 Degree View Outdoor with accessories (IP 66); 8 Port Industrial PoE Switch 10/100BaseT (0 deg to +70 deg. Celsius); Filed Equipment cabinet (FEC), with fan and ventilation, NEMEX 4X ,door, minimum size (600x600x400mm), the cabinet/enclosure includes industrial switch and UPS.; IP Phone Communication server (hot standby) 50 Port equipped, Gateway, Gatekeeper, H.323, SIP, redundant Power etc.; IP Phone Voice gateway; Voice IP Phone; NMS Server for IP phone and NETWORK Elements; NMS Workstation; Firm Ware, software & licenses; Data Cable; Power Cable; Layer 3, 24 Port non-PoE switch10/1000BaseT/LX (-40 deg to +70 deg. Celsius), stack module and associated accessories for utility Telecom Server room; Layer 2, 24 Port non-PoE switch10/1000BaseT (-40 deg to +70 deg. Celsius), stack module and associated accessories for utility Telecom Server and Security Guard house room; Network Management System Server; Network Management System workstation; 42U rack dimension (W x H x L) 800 x 2000 x 1000 mm; 12U rack dimension (W x H x L) 600 x 625 x 600 mm; 06C Optical Fiber SM; 48C Optical Fiber SM; 48 Core Splice Closure; Optical fiber patch cord 5m; Data Cable (STP CAT 6A); 3C Power Cable armored 1.5mm2; 3C Power Cable armored 2.5 mm2; UTP CAT6A Patch Cord 1m/3m/5m; Access Control Unit; Access Card Reader; Magnetic Lock; Break Glass; Exit Push button; Door Sensor; Biometrics Reader; Smart Card Printer; Card Issue Work Station; Photographic Camera with stand; Interface modules with CCTV, Fire and other systems; 1-ways ducts, 6 x 50mm diameter; 6 PVC ducts 150x200 mm (60mm diameter); physical units [169.72 h] | NLI |
|  | RD | **Road Works** |  | 2026-09-01 | 2027-05-20 |  |  |  |  |  |  |  |  |
|  | PO | **Issuance of Purchase Orders** |  | 2026-09-01 | 2026-12-10 |  |  |  |  |  |  |  |  |
|  | 1 | **Road Works** |  | 2026-09-01 | 2026-11-16 |  |  |  |  |  |  |  |  |
| PRO-RD-PO-100 |  | Issuance of Purchase Order for Subgrade of Road Works | 7d | 2026-09-01 A | 2026-09-03 A | ENG-MT-RD-A-100, ENG-SH-RD-A-100, ENG-SH-RD-A-110, ENG-MS-RD-A-30, ENG-MS-RD-A-40, ENG-MS-RD-A-10, ENG-MS-RD-A-20 | 100% | 2026-11-09 | 2026-11-16 |  |  | physical units [118.81 h] | NLI |
| PRO-RD-PO-110 |  | Issuance of Purchase Order for Aggregate Base Course of Road Works | 7d | 2026-09-01 A | 2026-09-03 A | ENG-MT-RD-A-110, ENG-SH-RD-A-100, ENG-SH-RD-A-110, PRO-RD-PO-100, ENG-MS-MRK-A-10, ENG-MS-TSB-A-10 | 100% | 2026-11-17 | 2026-11-24 |  |  | physical units [118.81 h] | NLI |
| PRO-RD-PO-120 |  | Issuance of Purchase Order for Prime Coat of Road Works | 7d | 2026-09-01 A | 2026-09-03 A | ENG-MT-RD-A-120, ENG-SH-RD-A-100, ENG-SH-RD-A-110, PRO-RD-PO-110 | 100% | 2026-11-25 | 2026-12-02 |  |  | physical units [118.81 h] | NLI |
| PRO-RD-PO-130 |  | Issuance of Purchase Order for Asphaltic Base Course Layer of Road Works | 7d | 2026-09-01 A | 2026-09-03 A | ENG-MT-RD-A-130, ENG-SH-RD-A-100, ENG-SH-RD-A-110, PRO-RD-PO-120 | 100% | 2026-12-03 | 2026-12-10 |  |  | physical units [118.81 h] | NLI |
| PRO-RD-PO-180 |  | Issuance of Purchase Order for Asphaltic Wearing Course Layer for Roads Network | 7d | 2026-09-01 A | 2026-09-03 A | ENG-MT-RD-A-160, ENG-SH-RD-A-100, ENG-SH-RD-A-110, PRO-RD-PO-130 | 100% | 2026-12-12 | 2026-12-19 |  |  | physical units [118.81 h] | NLI |
| PRO-RD-PO-190 |  | Issuance of Purchase Order for Tack Coat Layer for Roads Network | 7d | 2026-11-09 | 2026-11-16 | ENG-MT-RD-A-170, ENG-SH-RD-A-100, ENG-SH-RD-A-110, PRO-RD-PO-180 |  |  |  | -58d | 0d | physical units [118.81 h] | NLI |
|  | 2 | **Pavement Works** |  | 2026-11-09 | 2026-11-24 |  |  |  |  |  |  |  |  |
| PRO-RD-PO-140 |  | Issuance of Purchase Order for Interlock Tiles of Landscaping | 7d | 2026-11-09 | 2026-11-16 | PRO-RD-PO-120 SS, ENG-MT-RD-A-140, ENG-SH-HS-A-110, ENG-MS-HS-A-10 |  |  |  | -67d | 0d | physical units [118.81 h] | NLI |
| PRO-RD-PO-150 |  | Issuance of Purchase Order for Curbstones of Landscaping | 7d | 2026-11-17 | 2026-11-24 | ENG-MT-RD-A-150, ENG-SH-HS-A-110, PRO-RD-PO-140 |  |  |  | -67d | 0d | physical units [118.81 h] | NLI |
|  | 3 | **Traffic Signs Boards and Roads Marking** |  | 2026-11-25 | 2026-12-10 |  |  |  |  |  |  |  |  |
| PRO-RD-PO-160 |  | Issuance of Purchase Order for Traffic Signs Boards of Road Works | 7d | 2026-11-25 | 2026-12-02 | ENG-MT-TS-A-100, ENG-SH-TSB-A-100, PRO-RD-PO-150, ENG-MS-TSB-A-10 |  |  |  | -67d | 0d | physical units [118.81 h] | NLI |
| PRO-RD-PO-170 |  | Issuance of Purchase Order for Road Markings of Road Works | 7d | 2026-12-03 | 2026-12-10 | ENG-MT-TS-A-110, ENG-SH-MRK-A-110, PRO-RD-PO-160, ENG-MS-MRK-A-10 |  |  |  | -60d | 0d | physical units [118.81 h] | NLI |

| ID | WBS | Activity | Duration | Start | Finish | Predecessors | Complete | Planned start | Planned finish | Total float | Free float | Resources | 01- Network |
| --- | --- | --- | --- | --- | --- | --- | --- | --- | --- | --- | --- | --- | --- |
|  | MF | **Manufacturing of Material** |  | 2026-09-05 | 2027-03-17 |  |  |  |  |  |  |  |  |
|  | 1 | **Road Works** |  | 2026-09-05 | 2027-01-13 |  |  |  |  |  |  |  |  |
| PRO-RD-MF-100 |  | Manufacturing of Subgrade for Road Works | 10d | 2026-09-05 A | 2026-09-09 A | PRO-RD-PO-100 | 100% | 2026-11-17 | 2026-11-28 |  |  | physical units [169.72 h] | NLI |
| PRO-RD-MF-110 |  | Manufacturing of Aggregate Base Course for Road Works | 20d | 2026-09-05 A | 2026-09-09 A | PRO-RD-PO-110, PRO-RD-MF-100 | 100% | 2026-11-29 | 2026-12-21 |  |  | physical units [339.45 h] | NLI |
| PRO-RD-MF-120 |  | Manufacturing of Prime Coat for Road Works | 20d | 2026-09-05 A | 2026-09-09 A | PRO-RD-PO-120, PRO-RD-MF-110 | 100% | 2026-12-22 | 2027-01-13 |  |  | physical units [339.45 h] | NLI |
| PRO-RD-MF-130 |  | Manufacturing of Asphaltic Base Course Layer for Road Works | 20d | 2026-09-05 A | 2026-09-09 A | PRO-RD-PO-130, PRO-RD-MF-120 | 100% | 2027-01-14 | 2027-02-06 |  |  | physical units [339.45 h] | NLI |
| PRO-RD-MF-180 |  | Manufacturing of Asphaltic Wearing Course Layer for Roads Network | 20d | 2026-09-05 A | 2026-09-09 A | PRO-RD-PO-180, PRO-RD-MF-130 | 100% | 2027-02-07 | 2027-03-01 |  |  | physical units [339.45 h] | NLI |
| PRO-RD-MF-190 |  | Manufacturing of Tack Coat Layer for Roads Network | 50d | 2026-11-17 | 2027-01-13 | PRO-RD-PO-190 |  |  |  | -58d | 0d | physical units [848.62 h] | NLI |
|  | 2 | **Pavement Works** |  | 2027-01-14 | 2027-02-07 |  |  |  |  |  |  |  |  |
| PRO-RD-MF-140 |  | Manufacturing of Interlock Tiles for Landscaping | 21d | 2027-01-14 | 2027-02-07 | PRO-RD-PO-140, PRO-RD-MF-190 |  |  |  | -58d | 0d | physical units [356.42 h] | NLI |
| PRO-RD-MF-150 |  | Manufacturing of Curbstones for Landscaping | 20d | 2027-01-14 | 2027-02-06 | PRO-RD-PO-150, PRO-RD-MF-140 SS |  |  |  | -46d | 8d | physical units [339.45 h] | NLI |
|  | 3 | **Traffic Signs Boards and Roads Marking** |  | 2026-12-03 | 2027-03-17 |  |  |  |  |  |  |  |  |
| PRO-RD-MF-160 |  | Manufacturing of Traffic Signs Boards for Road Works | 80d | 2026-12-03 | 2027-03-06 | PRO-RD-PO-160 |  |  |  | -67d | 10d | physical units [1357.79 h] | NLI |
| PRO-RD-MF-170 |  | Manufacturing of Road Markings for Road Works | 80d | 2026-12-12 | 2027-03-17 | PRO-RD-PO-170 |  |  |  | -60d | 0d | physical units [1357.79 h] | NLI |
|  | 1DL | **1st Material Delivery & Site Inspection** |  | 2026-09-13 | 2027-04-03 |  |  |  |  |  |  |  |  |
|  | 1 | **Road Works** |  | 2026-09-13 | 2027-01-21 |  |  |  |  |  |  |  |  |
| PRO-RD-1DL-100 |  | 1ST Material Delivery for Subgrade of Road Works | 7d | 2026-09-13 A | 2026-09-23 A | PRO-RD-MF-100 | 100% | 2026-11-29 | 2026-12-06 |  |  | physical units [118.81 h] | NLI |
| PRO-RD-1DL-110 |  | 1ST Material Delivery for Aggregate Base Course of Road Works | 7d | 2026-09-13 A | 2026-09-23 A | PRO-RD-MF-110, PRO-RD-1DL-100 | 100% | 2026-12-22 | 2026-12-29 |  |  | physical units [118.81 h] | NLI |
| PRO-RD-1DL-120 |  | 1ST Material Delivery for Prime Coat of Road Works | 15d | 2026-09-13 A | 2026-09-23 A | PRO-RD-MF-120, PRO-RD-1DL-110 | 100% | 2027-01-14 | 2027-01-31 |  |  | physical units [254.58 h] | NLI |
| PRO-RD-1DL-130 |  | 1ST Material Delivery for Asphaltic Base Course Layer of Road Works | 7d | 2026-09-13 A | 2026-09-23 A | PRO-RD-MF-130, PRO-RD-1DL-120 | 100% | 2027-02-07 | 2027-02-14 |  |  | physical units [118.81 h] | NLI |
| PRO-RD-1DL-180 |  | 1ST Material Delivery for Asphaltic Wearing Course Layer for Roads Network | 7d | 2026-09-13 A | 2026-09-23 A | PRO-RD-MF-180, PRO-RD-1DL-130 | 100% | 2027-03-02 | 2027-03-13 |  |  | physical units [118.81 h] | NLI |
| PRO-RD-1DL-190 |  | 1ST Material Delivery for Tack Coat Layer for Roads Network | 7d | 2027-01-14 | 2027-01-21 | PRO-RD-MF-190, PRO-RD-1DL-180 |  |  |  | -48d | 0d | physical units [118.81 h] | NLI |
|  | 2 | **Pavement Works** |  | 2027-02-08 | 2027-02-23 |  |  |  |  |  |  |  |  |
| PRO-RD-1DL-140 |  | 1ST Material Delivery for Interlock Tiles of Landscaping | 7d | 2027-02-08 | 2027-02-15 | PRO-RD-MF-140, PRO-RD-1DL-190 |  |  |  | -58d | 0d | physical units [118.81 h] | NLI |
| PRO-RD-1DL-150 |  | 1ST Material Delivery for Curbstones of Landscaping | 7d | 2027-02-16 | 2027-02-23 | PRO-RD-MF-150, PRO-RD-1DL-140 |  |  |  | -54d | 4d | physical units [118.81 h] | NLI |

| ID | WBS | Activity | Duration | Start | Finish | Predecessors | Complete | Remaining | Planned start | Planned finish | Total float | Free float | Resources | 01- Network |
| --- | --- | --- | --- | --- | --- | --- | --- | --- | --- | --- | --- | --- | --- | --- |
|  | 3 | **Traffic Signs Boards and Roads Marking** |  | 2027-03-18 | 2027-04-03 |  |  |  |  |  |  |  |  |  |
| PRO-RD-1DL-170 |  | 1ST Material Delivery for Road Markings of Road Works | 7d | 2027-03-18 | 2027-03-25 | PRO-RD-MF-170, PRO-RD-1DL-150 |  |  |  |  | -60d | 0d | physical units [118.81 h] | NLI |
| PRO-RD-1DL-160 |  | 1ST Material Delivery for Traffic Signs Boards of Road Works | 7d | 2027-03-27 | 2027-04-03 | PRO-RD-MF-160, PRO-RD-1DL-170 |  |  |  |  | -60d | 25d | physical units [118.81 h] | NLI |
|  | DL | **Material Delivery & Site Inspection** |  | 2026-09-27 | 2027-05-20 |  |  |  |  |  |  |  |  |  |
|  | 1 | **Pre-Bituminous Construction** |  | 2026-09-27 | 2026-12-02 |  |  |  |  |  |  |  |  |  |
| PRO-R25-RD-DL-100 |  | Material Delivery & Site Inspection for Subgrade of Road Works | 21d | 2026-09-27 A | 2026-11-09 | PRO-RD-1DL-100 | 60% | 0d | 2026-12-07 | 2026-12-30 | -38d | 0d | Excavations (including Roads , Plots and Pond); Embankments to the Site and Roads (including Roads , Plots and Pond); Subgrade; physical units [356.42 h] | NLI |
| PRO-R25-RD-DL-110 |  | Material Delivery & Site Inspection for Aggregate Base Course of Road Works | 21d | 2026-09-27 A | 2026-12-02 | PRO-RD-1DL-110, PRO-R25-RD-DL-100 | 60% | 21d | 2026-12-31 | 2027-01-24 | -38d | 0d | Aggregate base course; physical units [356.42 h] | NLI |
|  | 4 | **Bituminous Construction** |  | 2026-09-27 | 2027-02-03 |  |  |  |  |  |  |  |  |  |
| PRO-R25-RD-DL-160 |  | Material Delivery & Site Inspection for Prime Coat Layer of Road Works | 11d | 2026-09-27 A | 2026-12-15 | PRO-RD-1DL-120, PRO-R25-RD-DL-110 | 60% | 11d | 2027-02-01 | 2027-02-13 | -38d | 0d | Bituminous base course (Grading I - Class A), including Prime Coat (MC1); physical units [186.7 h] | NLI |
| PRO-R25-RD-DL-170 |  | Material Delivery & Site Inspection for Asphaltic Base Course Layer of Road Works | 11d | 2026-09-27 A | 2026-12-28 | PRO-RD-1DL-130, PRO-R25-RD-DL-160 | 60% | 11d | 2027-02-15 | 2027-02-27 | -38d | 0d | Bituminous base course (Grading I - Class A), including Prime Coat (MC1); physical units [186.7 h] | NLI |
| PRO-RD-DL-200 |  | Material Delivery for Asphaltic Wearing Course Layer for Roads Network | 11d | 2026-09-27 A | 2027-01-10 | PRO-RD-1DL-180, PRO-R25-RD-DL-170 | 60% | 11d | 2027-03-14 | 2027-03-25 | -38d | 10d | Bituminous concrete wearing course, (Grading I - Class A), including tack coat (RC2); physical units [186.7 h] | NLI |
| PRO-RD-DL-210 |  | Material Delivery for Tack Coat Layer for Roads Network | 11d | 2027-01-23 | 2027-02-03 | PRO-RD-1DL-190, PRO-RD-DL-200 |  |  |  |  | -48d | 10d | Bituminous concrete wearing course, (Grading I - Class A), including tack coat (RC2); physical units [186.7 h] | NLI |
|  | 2 | **Pavement Works** |  | 2027-02-16 | 2027-03-16 |  |  |  |  |  |  |  |  |  |
| PRO-R25-RD-DL-120 |  | Material Delivery & Site Inspection of Interlock Tiles for Landscaping | 11d | 2027-02-16 | 2027-02-28 | PRO-RD-1DL-140, PRO-RD-DL-210 |  |  |  |  | -58d | 0d | 60mm thick; 80mm thick; physical units [186.7 h] | NLI |
| PRO-R25-RD-DL-130 |  | Material Delivery & Site Inspection of Curbstones for Landscaping | 11d | 2027-03-01 | 2027-03-16 | PRO-RD-1DL-150, PRO-R25-RD-DL-120 |  |  |  |  | -58d | 20d | Precast Concrete Curbstone 150X300X900 Type (K1-A); Precast Concrete Curbstone 100X200X500 Type (K4); Precast Concrete Curbstone 150X300X500 Type (K1-B); Precast Concrete Curbstone Type (K1-C); Flush Kerb Type (D); physical units [186.7 h] | NLI |
|  | 3 | **Traffic Signs Boards and Roads Marking** |  | 2027-04-20 | 2027-05-20 |  |  |  |  |  |  |  |  |  |
| PRO-R25-RD-DL-150 |  | Material Delivery & Site Inspection of Road Markings For Road Works | 11d | 2027-04-20 | 2027-05-02 | PRO-LV-TT-DL-100, PRO-RD-1DL-170 SS, PRO-R25-RD-DL-130 SS |  |  |  |  | -85d | 0d | Retroreflective Thermoplastic White Traffic lines; Retroreflective Thermoplastic Yellow, Traffic lines; Precast Concrete Blister Warning Tactile Paver Brown Finish 300*300*60mm; physical units [186.7 h] | NLI |
| PRO-R25-RD-DL-140 |  | Material Delivery & Site Inspection of Traffic Signs Boards For Road Works | 11d | 2027-05-03 | 2027-05-20 | PRO-RD-1DL-160, PRO-R25-RD-DL-150 |  |  |  |  | -85d | 0d | Traffic signs, ground mounted, Sheet Aluminum, (breakaway) Single post IPE, with all accessories; physical units [186.7 h] | NLI |
|  | 1 | **Superstructure Works** |  | 2026-09-22 | 2026-12-27 |  |  |  |  |  |  |  |  |  |
|  | 1 | **Issuance of Purchase Orders** |  | 2026-09-22 | 2026-11-16 |  |  |  |  |  |  |  |  |  |
|  | SL1 | **Water Pump Station** |  | 2026-10-20 | 2026-10-24 |  |  |  |  |  |  |  |  |  |
| PRO-LS-CV-PO-20 |  | Issuance of Purchase Order for Works for Water Pump Station | 4d | 2026-10-20 A | 2026-10-24 A | ENG-MT-SLS-CV-A-110, ENG-SH-LS-A-170, ENG-MS-LS-A-180 | 100% |  | 2026-11-02 | 2026-11-05 |  |  | physical units [67.89 h] | NLI |
|  | SL11 | **Storage Tank (TSE)** |  | 2026-11-09 | 2026-11-16 |  |  |  |  |  |  |  |  |  |
| PRO-TSE-CV-PO-30 |  | Issuance of Purchase Order for Works for Storage Tank (TSE) | 7d | 2026-11-09 | 2026-11-16 | ENG-MT-TSE-CV-A-140, ENG-SH-ST-A-180, PRO-LS-CV-PO-20, ENG-MS-ST-A-190 |  |  |  |  | -92d | 0d | physical units [118.81 h] | NLI |

| ID | WBS | Activity | Duration | Start | Finish | Predecessors | Complete | Remaining | Planned start | Planned finish | Total float | Free float | Resources | 01- Network |
| --- | --- | --- | --- | --- | --- | --- | --- | --- | --- | --- | --- | --- | --- | --- |
|  | SL111 | **Control Room** |  | 2026-09-22 | 2026-09-30 |  |  |  |  |  |  |  |  |  |
| PRO-TSE-CV-PO-40 |  | Issuance of Purchase Order for Works for Control Room | 7d | 2026-09-22 A | 2026-09-30 A | ENG-SH-ST-A-190, ENG-MT-TSE-CV-A-150, PRO-TSE-CV-PO-30 SS, ENG-MS-ST-A-200 | 100% |  | 2026-11-07 | 2026-11-14 |  |  | physical units [118.81 h] | NLI |
|  | SL | **Sewage Pump Stations** |  | 2026-09-22 | 2026-09-30 |  |  |  |  |  |  |  |  |  |
| PRO-SPS-CV-PO-10 |  | Issuance of Purchase Order for Works of Sewage Pump Station | 7d | 2026-09-22 A | 2026-09-30 A | ENG-MT-PS-CV-A-150, ENG-SH-SPS-A-160, PRO-TSE-CV-PO-40 SS, ENG-MS-SPS-A-170 | 100% |  | 2026-11-07 | 2026-11-14 |  |  | physical units [118.81 h] | NLI |
|  | SL12 | **Gaurd Room** |  | 2026-09-26 | 2026-10-03 |  |  |  |  |  |  |  |  |  |
| PRO-GR-CV-PO-40 |  | Issuance of Purchase Order for Materials for Gaurd Room | 7d | 2026-09-26 A | 2026-10-03 A | ENG-MT-GR-CV-A-130, ENG-SH-GR-A-190, PRO-SPS-CV-PO-10 SS, ENG-MS-GR-A-210 | 100% |  | 2026-11-07 | 2026-11-14 |  |  | physical units [118.81 h] | NLI |
|  | SL121 | **Boundary Fence** |  | 2026-09-26 | 2026-10-03 |  |  |  |  |  |  |  |  |  |
| PRO-FE-CV-PO-50 |  | Issuance of Purchase Order for Materials for Boundary Fence | 7d | 2026-09-26 A | 2026-10-03 A | ENG-MT-FE-CV-A-120, ENG-SH-GR-A-200, PRO-GR-CV-PO-40 SS, ENG-MS-GR-A-220 | 100% |  | 2026-11-07 | 2026-11-14 |  |  | physical units [118.81 h] | NLI |
|  | 2 | **Manufacturing of Material** |  | 2026-10-01 | 2026-12-02 |  |  |  |  |  |  |  |  |  |
|  | SL1 | **Water Pump Station** |  | 2026-10-25 | 2026-11-01 |  |  |  |  |  |  |  |  |  |
| PRO-LS-CV-MF-30 |  | Manufacturing of Works for Works for Water Pump Station | 7d | 2026-10-25 A | 2026-11-01 A | PRO-LS-CV-PO-20 | 100% |  | 2026-11-07 | 2026-11-14 |  |  | physical units [118.81 h] | NLI |
|  | SL11 | **Storage Tank (TSE)** |  | 2026-11-17 | 2026-12-02 |  |  |  |  |  |  |  |  |  |
| PRO-TSE-CV-MF-40 |  | Manufacturing of Works for Storage Tank (TSE) | 14d | 2026-11-17 | 2026-12-02 | PRO-TSE-CV-PO-30, PRO-LS-CV-MF-30 |  |  |  |  | -53d | 0d | physical units [237.61 h] | NLI |
|  | SL111 | **Control Room** |  | 2026-10-01 | 2026-10-31 |  |  |  |  |  |  |  |  |  |
| PRO-TSE-CV-MF-50 |  | Manufacturing of Works for Control Room | 21d | 2026-10-01 A | 2026-10-31 A | PRO-TSE-CV-PO-40, PRO-TSE-CV-MF-40 SS | 100% |  | 2026-11-15 | 2026-12-08 |  |  | physical units [356.42 h] | NLI |
|  | SL | **Sewage Pump Stations** |  | 2026-10-01 | 2026-10-25 |  |  |  |  |  |  |  |  |  |
| PRO-SPS-CV-MF-10 |  | Manufacturing of Works of Sewage Pump Station | 21d | 2026-10-01 A | 2026-10-25 A | PRO-SPS-CV-PO-10, PRO-TSE-CV-MF-50 SS | 100% |  | 2026-11-15 | 2026-12-08 |  |  | physical units [356.42 h] | NLI |
|  | SL12 | **Gaurd Room** |  | 2026-10-04 | 2026-11-01 |  |  |  |  |  |  |  |  |  |
| PRO-GR-CV-MF-50 |  | Manufacturing of Materials for Gaurd Room | 21d | 2026-10-04 A | 2026-11-01 A | PRO-GR-CV-PO-40, PRO-SPS-CV-MF-10 SS | 100% |  | 2026-11-15 | 2026-12-08 |  |  | physical units [356.42 h] | NLI |
|  | SL121 | **Boundary Fence** |  | 2026-10-04 | 2026-10-27 |  |  |  |  |  |  |  |  |  |
| PRO-FE-CV-MF-60 |  | Manufacturing of Materials for Boundary Fence | 21d | 2026-10-04 A | 2026-10-27 A | PRO-FE-CV-PO-50, PRO-GR-CV-MF-50 SS | 100% |  | 2026-11-15 | 2026-12-08 |  |  | physical units [356.42 h] | NLI |
|  | 3 | **1st Material Delivery & Site Inspection** |  | 2026-10-26 | 2026-12-10 |  |  |  |  |  |  |  |  |  |
|  | SL1 | **Water Pump Station** |  | 2026-10-31 | 2026-11-12 |  |  |  |  |  |  |  |  |  |
| PRO-LS-CV-1DL-40 |  | 1ST Material Delivery for Works of Water Pump Station | 6d | 2026-10-31 A | 2026-11-12 | PRO-LS-CV-MF-30 SS | 30% | 4d | 2026-11-07 | 2026-11-12 | -53d | 0d | physical units [101.83 h] | NLI |

| ID | WBS | Activity | Duration | Start | Finish | Predecessors | Complete | Remaining | Planned start | Planned finish | Total float | Free float | Resources | 01- Network | 13 BUILDINGS |
| --- | --- | --- | --- | --- | --- | --- | --- | --- | --- | --- | --- | --- | --- | --- | --- |
|  | SL11 | **Storage Tank (TSE)** |  | 2026-12-03 | 2026-12-10 |  |  |  |  |  |  |  |  |  |  |
| PRO-TSE-CV-1DL-50 |  | 1ST Material Delivery for Works for Storage Tank (TSE) | 7d | 2026-12-03 | 2026-12-10 | PRO-TSE-CV-MF-40, PRO-LS-CV-1DL-40 |  |  |  |  | -53d | 0d | physical units [118.81 h] | NLI |  |
|  | SL111 | **Control Room** |  | 2026-11-01 | 2026-12-09 |  |  |  |  |  |  |  |  |  |  |
| PRO-TSE-CV-1DL-60 |  | 1ST Material Delivery for Works for Control Room | 7d | 2026-11-01 A | 2026-12-09 | PRO-TSE-CV-MF-50, PRO-TSE-CV-1DL-50 SS | 17% | 6d | 2026-12-09 | 2026-12-16 | -53d | 0d | physical units [118.81 h] | NLI |  |
|  | SL | **Sewage Pump Stations** |  | 2026-10-26 | 2026-12-03 |  |  |  |  |  |  |  |  |  |  |
| PRO-SPS-CV-1DL-10 |  | 1ST Material Delivery for Works of Sewage Pump Station | 7d | 2026-10-26 A | 2026-12-03 | PRO-SPS-CV-MF-10, PRO-TSE-CV-1DL-60 SS | 86% | 1d | 2026-12-09 | 2026-12-16 | -53d | 0d | physical units [118.81 h] | NLI |  |
|  | SL12 | **Gaurd Room** |  | 2026-12-03 | 2026-12-10 |  |  |  |  |  |  |  |  |  |  |
| PRO-GR-CV-1DL-60 |  | 1ST Material Delivery for Materials for Gaurd Room | 7d | 2026-12-03 | 2026-12-10 | PRO-GR-CV-MF-50, PRO-SPS-CV-1DL-10 SS |  |  |  |  | -53d | 0d | physical units [118.81 h] | NLI |  |
|  | SL121 | **Boundary Fence** |  | 2026-10-28 | 2026-12-06 |  |  |  |  |  |  |  |  |  |  |
| PRO-FE-CV-1DL-70 |  | 1ST Material Delivery for Materials for Boundary Fence | 7d | 2026-10-28 A | 2026-12-06 | PRO-FE-CV-MF-60, PRO-GR-CV-1DL-60 SS | 57% | 3d | 2026-12-09 | 2026-12-16 | -49d | 4d | physical units [118.81 h] | NLI |  |
|  | 4 | **Material Delivery & Site Inspection** |  | 2026-10-26 | 2026-12-27 |  |  |  |  |  |  |  |  |  |  |
|  | SL1 | **Water Pump Station** |  | 2026-10-31 | 2026-11-16 |  |  |  |  |  |  |  |  |  |  |
| PRO-LS-CV-DL-50 |  | Material Delivery & Site Inspection for Works for Water Pump Station | 10d | 2026-10-31 A | 2026-11-16 | PRO-LS-CV-1DL-40 SS | 30% | 7d | 2026-11-07 | 2026-11-17 | -53d | 0d | 100 mm thickness lean concrete under the foundation; Foundation; Grade Beams; Slab on grade; Beams; Columns; Slabs; Lightweight Concrete Roof insulation as per Architect's specification; Hollow Concrete masonry unit, 150 mm thick wall for internal block; Insulated brickwork. with expanded polystyrene 200mm thick for External block; Hollow Concrete masonry unit, 300 mm thick wall for External block; 2 perpendicular layers of cold bitumen coats; 2 layer of 4mm HDPE membrane, 2 perpendicular layers cold bitumen coats; 1 layer EPOXY Paint 300 micron; Membrane fully bonded to prime deck and upstand; Geotextile Filter membrane uv resistance; 85mm thick thermal insulation; 1.5mm thick epdm waterproofing membrane; D1 - 1100 mm width x 2200 mm height; D4 - 1800 mm width x 3000 mm height; 1000 mm width x 2400 mm high (L1); Supply and install External plastering to walls and columns min. 15mm thick with cement mortar of specified grade including galvanized mesh, corner beads, angle beads, CE bonds to rough and smooth plaster complete the work as per drawing & specification.; Supply and install 2 coats of weatherproof paint at walls including one prime coat and two coats and putty to give smooth Surface as a base for paint including fiberglass tape to joints and all other accessories as per manufacturers approved specification; Supply and install internal plastering to walls and columns min. 15mm thick with cement mortar of specified grade including galvanized mesh, corner beads, angle beads, CE bonds to rough and smooth plaster complete the work as per drawing & specification.; Supply and install 2 coats of epoxy paint at walls including one prime coat and two coats and putty to give smooth Surface as a base for paint including fiberglass tape to joints and all other accessories as per manufacturers approved specification; Supply and install 300*300mm glazed ceramic wall tiles on cement mortar and including rough and smooth plaster, galvanized mesh, corner beads, angle beads, CE bonds; Acid Proof Tiles; Supply and install 600*600mm porcelain tiles with approved quality on 30 mm mortar including sand fill material as approved by the Client; Supply and install 12.5mm thk, gypsum board suspended ceiling including suspension system, paints as required specification and material as approved by the Client including frames supports, access openings and all other accessories to complete as shown in; 4.5 KG CO2 Type Fire Extinguishers; 6 KG ABC Type Fire Extinguishers; 15 mm dia.; 25 mm dia.; 32 mm dia.; 40 mm dia.; 80 mm dia.; 200 mm dia.; 250 mm dia.; 20 mm; 25 mm; 32 mm; 40 mm; 50 mm; 100 mm; 150 mm; 200 mm; 250 mm; Altitude control valve assembly, size 200 mm; Supply, install, connection, testing and commssionigs horizontal bladder type pressure tank with capacity 1500 liter according to manufacturer's detail and specification - PS-PT-1; Supply, install, connection, testing and commssionigs horizontal bladder type pressure tank with capacity 300 liter according to manufacturer's detail and specification - PS-PT-2; Chemical DosingTank (CDT) 6000 liters capacity polytheylene tank With pump assembly.; Actual capacity 1.5 Ton; Actual capacity 2.0 Ton; Air Flow 280 l/s @ 150 pa; Air Flow 3200 l/s @ 100 pa; Air Flow 110 l/s @ 50 pa; Air Flow 70 l/s @ 50 pa; Air Flow 35 l/s @ 35 pa; Air Flow 105 l/s @ 50 pa; Air Flow 180 l/s @ 0.01 pa; Galvanized sheet metal ducts; Supply Liner Slot diffuser 3 slots 1 inch; Return Liner Slot diffuser 3 slots 1 inch; Exhaust Grill 150mm x 150mm; Sand trap louver 2400mm x 1000mm; Sound attenuator size 1050 x 650 x 1000 m; Pump Set for FF Supply (FP01.FP02); Pump Set for Domestic Supply (BP01 / BP02); Pump Set for Irrigation Supply (IRR01 / IRR02); Pump Set for Drainage System; Pump Set for SW Force Main (1W+1S); acoustical tiles suspended ceiling 600x600mm concealed metal; physical units [169.72 h] | NLI | LIFT |
|  | SL11 | **Storage Tank (TSE)** |  | 2026-11-17 | 2026-12-17 |  |  |  |  |  |  |  |  |  |  |
| PRO-TSE-CV-DL-60 |  | Material Delivery & Site Inspection for Works for Storage Tank (TSE) | 27d | 2026-11-17 | 2026-12-17 | PRO-LS-CV-DL-50 |  |  |  |  | -32d | 0d | 100 mm thickness lean concrete under the foundation; Foundation; 2 perpendicular layers of cold bitumen coats; 2 layer of 4mm HDPE membrane, 2 perpendicular layers cold bitumen coats; 1 layer EPOXY Paint 300 micron; Membrane fully bonded to prime deck and upstand; Geotextile Filter membrane uv resistance; 85mm thick thermal insulation; 1.5mm thick epdm waterproofing membrane; physical units [458.25 h] | NLI |  |
|  | SL111 | **Control Room** |  | 2026-11-01 | 2026-12-23 |  |  |  |  |  |  |  |  |  |  |
| PRO-TSE-CV-DL-70 |  | Material Delivery & Site Inspection for Works for Control Room | 14d | 2026-11-01 A | 2026-12-23 | PRO-TSE-CV-1DL-60, PRO-TSE-CV-DL-60 SS | 17% | 12d | 2026-12-17 | 2027-01-02 | -52d | 0d | 100 mm thickness lean concrete under the foundation; Foundation; Grade Beams; Beams; Columns; Slabs; Lightweight Concrete Roof insulation as per Architect's specification; Hollow Concrete masonry unit, 100 mm thick wall for internal block; Hollow Concrete masonry unit, 150 mm thick wall for internal block; Insulated brickwork. with expanded polystyrene 200mm thick for External block; Hollow Concrete masonry unit, 300 mm thick wall for External block; 2 perpendicular layers of cold bitumen coats; 2 layer of 4mm HDPE membrane, 2 perpendicular layers cold bitumen coats; 1 layer EPOXY Paint 300 micron; Membrane fully bonded to prime deck and upstand; Geotextile Filter membrane uv resistance; 85mm thick thermal insulation; 1.5mm thick epdm waterproofing membrane; D1 - 1100 mm width x 2200 mm height; D2 - 1070 mm width x 2225 mm height; D3 - 1200 mm width x 3000 mm height; D4 - 1800 mm width x 3000 mm height; Roller Shuter - 3000mm width x 4000mm height; D1' 1900mm width x 2950mm height; D2' 1200mm width x 2150mm height; D3' 800mm width x 2050mm height; D4' 1700mm width x 2050mm height; 1500 mm width x 1200 mm high (W01); 1200 mm width x 1200 mm high (W02); 1000 mm width x 2400 mm high (L1); Supply and install External plastering to walls and columns min. 15mm thick with cement mortar of specified grade including galvanized mesh, corner beads, angle beads, CE bonds to rough and smooth plaster complete the work as per drawing & specification.; Supply and install 2 coats of weatherproof paint at walls including one prime coat and two coats and putty to give smooth Surface as a base for paint including fiberglass tape to joints and all other accessories as per manufacturers approved specification; Supply and install internal plastering to walls and columns min. 15mm thick with cement mortar of specified grade including galvanized mesh, corner beads, angle beads, CE bonds to rough and smooth plaster complete the work as per drawing & specification.; Supply and install 2 coats of epoxy paint at walls including one prime coat and two coats and putty to give smooth Surface as a base for paint including fiberglass tape to joints and all other accessories as per manufacturers approved specification; Supply and install 300*300mm glazed ceramic wall tiles on cement mortar and including rough and smooth plaster, galvanized mesh, corner beads, angle beads, CE bonds; Acid Proof Tiles; Supply and install 600*600mm porcelain tiles with approved quality on 30 mm mortar including sand fill material as approved by the Client; Supply and install 12.5mm thk, gypsum board suspended ceiling including suspension system, paints as required specification and material as approved by the Client including frames supports, access openings and all other accessories to complete as shown in; 4.5 KG CO2 Type Fire Extinguishers; 6 KG ABC Type Fire Extinguishers; 15 mm dia.; 25 mm dia.; 32 mm dia.; 40 mm dia.; 80 mm dia.; 200 mm dia.; 250 mm dia.; Supply and installation of western water closet, flush tank type, heavy duty, one piece SASO certified, approval of client, dimesion not less than 40 cm width, 68 cm length including all other accessories as per drawings and specification; Supply and installation of urinal, heavy duty, one piece SASO certified, approval of client, including all other accessories as per drawings and specification; Supply and installation of Bib tap with Perenial Hose (BPH) with stainless steel flexible hose and cast brass chromeplated hand including all other accessories to complete as per drawing and specification.; Supply, installation, testing and commissioning of Lavatory / wash basin with counter for toilets, built in soap dispenser, mixer, single lever arm including all accessories as per drawings and specification and to the approval of the client; Provide and install paper towel dispenser, surface mounted, satin finish stainless steel as per approved sample including accessories.; Provide and install mirror as per approved sample including frames, backing and all accessories to complete.; Provide and install towel ring, surface mounted, satin finish stainless steel as per approved sample including accessories.; Hose Bib; Valve Chamber; Retarding Chamber; Inspection Chamber; Neutralization pit 1000x1000mm; 25mm diameter; 32mm diameter; 40mm diameter; 50mm diameter; 75mm diameter; 80mm diameter; 100mm diameter; 110mm diameter; 15mm diameter; 20mm diameter; 150mm diameter; 200mm diameter; 250mm diameter; 13mm diameter; Gully Trap; Floor drain 75mm; Floor cleanout 110mm; Roof drain; GRP water tanks capacity of each 1000 liter complete with all fittings, all valves and concrete pad; Water Heater 30ltr; Actual capacity 1.0 Ton; Actual capacity 1.5 Ton; Supply and install flexible duct with insulation; size 8 inch dia.; Supply and install flexible duct with insulation; size 10 inch dia.; Package Unit 57.4 kW "thermal"; Variable Air Volume (VAV 01); Variable Air Volume (VAV 02); Variable Air Volume (VAV 03); Variable Air Volume (VAV 04); Variable Air Volume (VAV 05); Variable Air Volume (VAV 06); Galvanized sheet metal ducts; Supply Liner Slot diffuser 3 slots 1 inch; Return Liner Slot diffuser 3 slots 1 inch; Exhaust Grill 150mm x 150mm; Exhast Air fan 515 l/s @ 150 pa; Exhast Air fan 3200 l/s @ 100 pa; Sand trap louver 2400mm x 1000mm; Sound attenuator size 1050 x 650 x 1000 m; Fire suppression system FM200 57 kg fill capacity consists of 2 cylinders, duty + standby, complete with all required mechanical, electrical , and control items to install, test, and operate the system.; Fire suppression system NOVEC 1230 134.1 kg fill capacity consists of 2 cylinders, duty + standby, complete with all required mechanical, electrical , and control items to install, test, and operate the system.; Fire suppression system NOVEC 1230 29.2 kg fill capacity consists of 2 cylinders, duty + standby, complete with all required mechanical, electrical , and control items to install, test, and operate the system.; Fire suppression system NOVEC 1230 53.5 kg fill capacity consists of 2 cylinders, duty + standby, complete with all required mechanical, electrical , and control items to install, test, and operate the system.; Fire suppression system NOVEC 1230 82.3 kg fill capacity consists of 2 cylinders, duty + standby, complete with all required mechanical, electrical , and control items to install, test, and operate the system.; Fire suppression system NOVEC 1230 42.5 kg fill capacity consists of 2 cylinders, duty + standby, complete with all required mechanical, electrical , and control items to install, test, and operate the system.; Supply and install steel ladder with cage at pump room for as per drawings and specification.; Overhead Travelling Crane; lifting capacity 1.50 ton manual type all to manufacturer's detail and specifications. - PS-OC-1; Hot dipped Galvanized steel Trench Grating; Hot dipped Galvanized steel Channel Cover Plate; Steel Frame and Cover 1200 x 1200; Vent Cowl (Standard Size); Steel Handrail of 1.2m height; 30W LED linear Pendant lighting; 30W LED Emergency linear Pendant lighting; 47W LED linear Pendant lighting; 47W LED Emergency linear Pendant lighting; 13W recess mounted LED down light fitting; 13W recess emergency mounted LED down light fitting with 1.5 Hr Battery; 10.4W LED Exit light with 1.5 Hr Battery; Distribution board (MDB-PR-01); Distribution board (LPDB-PR-01); Distribution board (MDB-CB-01); Distribution board (LPDB-CR-01); 13A,1? 230V Twin socket outlet with switch; 13A,1? 230V Industrial socket outlet with switch; 13A, Twin Socket outlet, Weather Proof; 400A, 3P Disconnect switch; 30A, 2P AC Disconnect Switch; 30A, 3P AC Disconnect Switch; 60A, 3P AC Disconnect Switch; 20A Duplex Receptacle Floor Mounted; Single gang Lighting switch; Double gang Lighting switch; 2way Single gang Lighting switch; Cable Tray 300 mm X 100 mm; 4CX6 Cu. XLPE FRLSZH Cable; 4CX10 Cu. XLPE FRLSZH Cable; 4CX16 Cu. XLPE FRLSZH Cable; 4CX25 Cu. XLPE FRLSZH Cable; 4CX35 Cu. XLPE FRLSZH Cable; 4CX185 Cu. XLPE FRLSZH Cable; 120mm2 Tinned copper wire; Grounding rod 20mmX3m; Grounding rod with Pit 20mmX3m; Earthing Bar; Cu earth strip 25X4 mm; 1.5m Air terminal; 4mm2 Cu./FRLSZH Cable; 6mm2 Cu./FRLSZH Cable; 10mm2 Cu./FRLSZH Cable; 16mm2 Cu./FRLSZH Cable; 95mm2 Cu./FRLSZH Cable; 120mm2 Cu./FRLSZH Cable; 30KVA, 400V, 3PH, 60Hz UPS; CB-UPS-01 panel; Supply, install and connection of a SCADA server cum workstation complete with network rack, network switch, sensors, printer, armoured cables with cable tray & conduits, level transmitter, liquid flow meter, quality sensor (COD,BOD,pH), pressure transmit; Fire Alarm Control panel with fire alarm zoning with Mimic panel with fire alarm zoning; Supply, install to site and installation of the Aspirating Smoke Detector complete with accessories and pipes; Supply, install to site and installation of the addressable manual call point with operation safety glass breaking and pushbutton; Supply, install to site and installation of the photoelectric smoke detector with base; Supply, install to site and installation of the heat detector with base; Supply, install to site and installation of multi criteria sensors with base; Supply, install to site and installation of Hydrogen detector; Supply, install to site and installation of Duct detector; Sounder With Beacon; Remote LED Indicator; Single Channel Interface Module; Addressable Control module for Sounders; Addressable relay module for interface; Addressable monitor module for interface; Supply, install to site and installation Fire loop cable; Supply, install to site and installation of power cable; Fire Fighter’s Telephone Centre; Fireman’s Telephone Jack; Voice Command Center; DACT (Auto - Dailer) for 24x7 Civil Defence; Transmission Communication cable - Fiber Optics; Transmission Communication cable - Ethernet Cable; Supply, install to site and installation of power supply system for fire alarm control panel; acoustical tiles suspended ceiling 600x600mm concealed metal; physical units [237.61 h] | NLI |  |
|  | SL | **Sewage Pump Stations** |  | 2026-10-26 | 2026-12-12 |  |  |  |  |  |  |  |  |  |  |
| PRO-SPS-CV-DL-10 |  | Material Delivery & Site Inspection for Works for Pump Station | 14d | 2026-10-26 A | 2026-12-12 | PRO-SPS-CV-1DL-10, PRO-TSE-CV-DL-70 SS | 86% | 2d | 2026-12-17 | 2027-01-02 | -52d | 1d | 100 mm thickness lean concrete under the foundation; Foundation; Walls; Beams; Slabs; Lightweight Concrete Roof insulation as per Architect's specification; 2 perpendicular layers of cold bitumen coats; 2 layer of 4mm HDPE membrane, 2 perpendicular layers cold bitumen coats; 1 layer EPOXY Paint 300 micron; Membrane fully bonded to prime deck and upstand; Geotextile Filter membrane uv resistance; 85mm thick thermal insulation; 1.5mm thick epdm waterproofing membrane; Supply and install External plastering to walls and columns min. 15mm thick with cement mortar of specified grade including galvanized mesh, corner beads, angle beads, CE bonds to rough and smooth plaster complete the work as per drawing & specification.; Supply and install 2 coats of weatherproof paint at walls including one prime coat and two coats and putty to give smooth Surface as a base for paint including fiberglass tape to joints and all other accessories as per manufacturers approved specification; Supply and install internal plastering to walls and columns min. 15mm thick with cement mortar of specified grade including galvanized mesh, corner beads, angle beads, CE bonds to rough and smooth plaster complete the work as per drawing & specification.; Supply and install 300*300mm glazed ceramic wall tiles on cement mortar and including rough and smooth plaster, galvanized mesh, corner beads, angle beads, CE bonds; physical units [237.61 h] | NLI | PUMP |
|  | SL12 | **Gaurd Room** |  | 2026-12-12 | 2026-12-27 |  |  |  |  |  |  |  |  |  |  |
| PRO-GR-CV-DL-70 |  | Material Delivery & Site Inspection for Materials for Gaurd Room | 14d | 2026-12-12 | 2026-12-27 | PRO-GR-CV-1DL-60, PRO-SPS-CV-DL-10 SS |  |  |  |  | -53d | 0d | 100 mm thickness lean concrete under the foundation; Foundation; Slab on Grade; Beams; Columns; Slabs; Lightweight Concrete Roof insulation as per Architect's specification; Insulated brickwork. with expanded polystyrene 200mm thick; vertical straight wall complete with accessories .; Common brickwork. 150mm thick; vertical straight wall complete with accessories.; Two Layers of Bituminous Coating; CW01 - 1000 mm width x 2000 mm height; CW02 - 2000 mm width x 2000 mm height; D2 - 900 mm x 2200 mm height temper door; Supply and install 50mm thick random cut stone cladding complete with 600mm x 50mm thick coping, necessary framings, slotted anchor connection, steel tube framing, aluminum angles all necessary fittings & accessories as per manufacturer's detail & archite; Supply and install 300*300mm terrazzo tiles with 150mm high skirting at perimeter with approved quality on 30 mm mortar including sand fill material as approved by the Client (For Roof); Supply and install 300*300mm glazed ceramic wall tiles on cement mortar and including rough and smooth plaster, galvanized mesh, corner beads, angle beads, CE bonds (For Toilets); Supply and install internal plastering and 2 coats of acrylic paint at walls including one coat of primer & two coats of putty to give smooth finish; Supply and install 600*600mm porcelain tiles with approved quality on 30 mm mortar including sand fill material as approved by the Client (for Security Area); Supply and install 12.5mm thk, gypsum board suspended ceiling including suspension system, paints as required specification and material as approved by the Client including frames supports, access openings and all other accessories to complete as shown in; Guard room coping 350mm; Guard room coping 450mm; Stone coping 500mm; Stone coping 525mm; Office Chairs; Office Tables; Guard Stand; Supply and install Hand Wash Basin with Water Tap, angle valve, P-trap connected to 50mm diameter sanitary pipe fittings chased to wall.; Supply and install paper towel dispenser, surface mounted, satin finish stainless steel as per approved sample including accessories.; Supply and install mirror, size 460*910mm as per approved sample including frames, backing and all accessories to complete.; Supply and install towel ring , surface mounted, satin finish stainless steel as per approved sample including accessories.; Kitchen sink with single bowl with hot/cold water mixer.; Supply and install Base mounted flush tank water Western water closet system with lid connected to 110mm soil pipe and sanitary tee complete with jointing, angles and bent below floor slab to drainage system; Gate Valves; Slow Closing Valve; 1 meter length 10mm diameter Flexible Hose with insulated handle complete with fork support, index push, vacuum breaker; 50mm diameter; 75mm diameter; 80mm diameter; 100mm diameter; 110mm diameter; 13mm diameter; 15mm diameter; 20mm diameter; 25mm diameter; 32mm diameter; Isolation Valve Size 20; Isolation Valve Size 25; Isolation Valve Size 32; Isolation Valve Size 50; 20 mm diameter spray head for cold water supply; Supply and install Electric Water Heater set with connection; Water meter complete with accessories.; Roof drain; Vent on a roof to exhaust air; 300 X 300 mm Gully trap; inspection chamber, size 800x900x1000; 900mm x 800mm Pressure break chamber; Floor cleanout, size 75 mm diameter; Floor cleanout, size 110 mm diameter; GRP water tanks capacity of each 1000 liter complete with all fittings, all valves and concrete pad; Mini split actual capacity 2 Ton; Supply, fabricate, install and testing factory fabricated metal ducts with flanges complete with supports, vanes, dampers, links, levers and quadrants etc. as per specifications. It shall include all materials of the duct and supporting arrangement comple; Supplying, installation testing & commissioning of external insulation on ducts; Supply, fix, testing and commissioning of exhaust air/fresh air louvers of powder coated extruded aluminium construction.; Providing, fixing, testing and commissioning of powder coated extruded aluminum sections grills and diffusers with dampers.; Supply, Installation & Testing of 2 hours Fire rated system for closing the openings between rooms with help of Rock wool, G.I Sheet and Hilti or equivalent Sealants( Qty measured will be the size of opening). Item Properties shall be quoted as per techni; 4.5 KG CO2 Type Fire Extinguishers; 6 KG ABC Type Fire Extinguishers; Junction Box for lighting fixture; Trench excavation to receive 2 nos 50mm diameter PVC Conduit, sand bedding and embedded with sand encasement and backfilling with excavated material complete with warning tape at approved depth; Supply, Install, fixings, testing and commissioning 80W LED Projector waterproof DJ effect light including customized project image features complete with mounting system specification to Engineer's approval.; Earth Pit; Grounding rod 20mmX3m; Grounding rod with Pit 20mmX3m; Earthing Bar; 120mm2 Tinned copper wire; Guard Room 1; Guard Room 2; Guard Room 3; 30A, 2P AC Disconnect Switch; 20A Duplex Receptacle Floor Mounted; Twin Socket outlet; Twin Socket outlet, Weather Proof; Single gang Lighting switch; 36W LED linear Pendant lighting; 36W LED Emergency linear Pendant lighting; 13W recess mounted LED down light fitting; 13W recess emergency mounted LED down light fitting with 1.5 Hr Battery; 10.4W LED Exit light with 1.5 Hr Battery; 4mm2 Cu./FRLSZH Cable; 6mm2 Cu./FRLSZH Cable; Fire Alarm Control panel with fire alarm zoning with Mimic panel with fire alarm zoning; Main Fire Alarm Control panel with fire alarm zoning with Mimic panel with fire alarm zoning; Supply and installation of the addressable manual call point with operation safety glass breaking and pushbutton; Supply and installation of the photoelectric heat & smoke detector with base; Sounder With Beacon; Addressable Control module for Sounders; Addressable Control module for HVAC System; Addressable Monitor module for HVAC System; 2C x 1.5 Sqm FR Rated Armored - Cable For Loop Wiring; DACT (Auto - Dailer) for 24x7 Civil Defence; Transmission Communication cable - Fiber Optics 12Core; Transmission Communication cable - Ethernet Cable; Supply, install to site and installation of power supply system for fire alarm control panel; Supply, install to site and installation of power cable; Fire Fighter’s Telephone Centre; Fireman’s Telephone Jack; Voice Command Center; physical units [237.61 h] | NLI |  |
|  | SL121 | **Boundary Fence** |  | 2026-10-28 | 2026-12-17 |  |  |  |  |  |  |  |  |  |  |
| PRO-FE-CV-DL-80 |  | Material Delivery & Site Inspection for Materials for Boundary Fence | 14d | 2026-10-28 A | 2026-12-17 | PRO-FE-CV-1DL-70, PRO-GR-CV-DL-70 SS | 57% | 6d | 2026-12-17 | 2027-01-02 | -53d | 1d | 100 mm thickness lean concrete under the foundation; Foundation; Walls; Beams; Columns; Common brickwork. 300mm thick; vertical straight wall complete with accessories.; Two Layers of Bituminous Coating; 20x20 Approved Polysulfide Joint Sealant; 2 perpendicular layers of cold bitumen coats; 2 layer of 4mm HDPE membrane, 2 perpendicular layers cold bitumen coats; 1 layer EPOXY Paint 300 micron; Membrane fully bonded to prime deck and upstand; Geotextile Filter membrane uv resistance; 85mm thick thermal insulation; 1.5mm thick epdm waterproofing membrane; Supply and install 33mm thick Lexan cladding blue complete with necessary framings & accessories all as per manufacturer's & architectural drawing.; Supply and install 50mm thick random cut stone cladding complete with 600mm x 50mm thick coping, necessary framings, slotted anchor connection, steel tube framing, aluminum angles all necessary fittings & accessories as per manufacturer's detail & archite; Supply and install External plastering to walls and columns min. 15mm thick with cement mortar of specified grade including galvanized mesh, corner beads, angle beads, CE bonds to rough and smooth plaster complete the work as per drawing & specification.; Supply and install 2 coats of weatherproof paint at walls including one prime coat and two coats and putty to give smooth Surface as a base for paint including fiberglass tape to joints and all other accessories as per manufacturers approved specification; Supply and install MODON Signage with Logo Type 1; Supply and install MODON Signage Type 2; Supply and install "Triangle Style" signage; Magnetic Control Access barrier, Automatic Vehicular Barriers to be installed on ground with magnetic access; Trench excavation to receive 2 nos 50mm diameter PVC Conduit, sand bedding and embedded with sand encasement and backfilling with excavated material complete with warning tape at approved depth; IR Intrusion Detection System Quad Beams (Tx & Rx) (SL-350 QDM); Control cable; CAT6A cable; Field Equipment Cabinet enclosed outdoor complete with precast concrete footing, suitable for parameter security and weather proof to the local enviroment. Not less than IP66 and IK rating.; Supply and install 800mm x 800mm x 800mm height concrete handhole with bituminous paint all around, 690mm x 690mm handhold cover and sump cover.; including pit excavation; 800mm depth minimum Trench excavation to receive 3 nos 50mm diameter PVC Conduit with spacer, sand bedding and embedded with sand encasement and backfill with excavated material well compacted complete with warning tape; Hot dipped galvanized cable conduits for CAT6A cable and Control Cables embedded to wall; 8 Port Industrial PoE Switch 10/100BaseT (0 deg to +70 deg. Celsius); 06C Optical Fiber SM; 48C Optical Fiber SM; 48 Core Splice Closure; Boom Barrier at Security Guard Room; Pedestrian turnstile at Security Guard Room; Access Control Unit; Access Card Reader; Magnetic Lock; Break Glass; Exit Push button; Door Sensor; Biometrics Reader; Pole/Bollard mounted IP( PoE), Automatic Number Plate Recognition (ANPR, camera, 5MP,IP 66, IR illumination, 3-8mm varifocal, auto iris lens type price include the Bollard/pole); 12U rack dimension (W x H x L) 600 x 625 x 600 mm; 4C-16mm2 CU/XLPE/PVC direct buried armored cable; 4C-10mm2 CU/XLPE/PVC direct buried armored cable; 16mm2 CU/PVC wire; 10mm2 CU/PVC wire; 400V, 3PH, 60Hz lighting control panel (LCP-02); 38W, 230V, 1PH, 60Hz fence, led linear uplight lighting, IP66; physical units [237.61 h] | NLI |  |
|  | IR1 | **Softscape and Planting Works** |  | 2026-11-25 | 2027-03-15 |  |  |  |  |  |  |  |  |  |  |
|  | PO | **Issuance of Purchase Orders** |  | 2026-11-25 | 2026-12-08 |  |  |  |  |  |  |  |  |  |  |
|  | 1 | **Main Line Pipes** |  | 2026-11-25 | 2026-12-08 |  |  |  |  |  |  |  |  |  |  |
| PRO-IR-PO-140 |  | Issuance of Purchase Order for Softscape and Planting Works | 6d | 2026-11-25 | 2026-12-01 | ENG-MT-IR-ML-A-140, PRO-LV-DP-PO-100 |  |  |  |  | -113d | 0d | physical units [101.83 h] | NLI |  |
| PRO-IR-PO-150 |  | Issuance of Purchase Order for Site Furnishings (Seating Bench,Stone Boulders and Gravel) | 6d | 2026-12-02 | 2026-12-08 | ENG-MT-IR-ML-A-150, PRO-IR-PO-140 |  |  |  |  | -103d | 0d | physical units [101.83 h] | NLI |  |

| ID | WBS | Activity | Duration | Start | Finish | Predecessors | Complete | Planned start | Planned finish | Total float | Free float | Resources | 01- Network |
| --- | --- | --- | --- | --- | --- | --- | --- | --- | --- | --- | --- | --- | --- |
|  | MF | **Manufacturing of Material** |  | 2026-12-02 | 2027-02-16 |  |  |  |  |  |  |  |  |
|  | 1 | **Main Line Pipes** |  | 2026-12-02 | 2027-02-16 |  |  |  |  |  |  |  |  |
| PRO-IR-MF-140 |  | Manufacturing of Softscape and Planting Works | 60d | 2026-12-02 | 2027-02-09 | PRO-IR-PO-140 |  |  |  | -113d | 0d | physical units [1018.34 h] | NLI |
| PRO-IR-MF-150 |  | Manufacturing of Valves for Site Furnishings (Seating Bench,Stone Boulders and Gravel) | 60d | 2026-12-09 | 2027-02-16 | PRO-IR-PO-150 |  |  |  | -103d | 0d | physical units [1018.34 h] | NLI |
|  | 1DL | **1st Material Delivery & Site Inspection** |  | 2027-02-10 | 2027-02-23 |  |  |  |  |  |  |  |  |
|  | 1 | **Main Line Pipes** |  | 2027-02-10 | 2027-02-23 |  |  |  |  |  |  |  |  |
| PRO-IR-1DL-140 |  | 1ST Material Delivery for Softscape and Planting Works | 6d | 2027-02-10 | 2027-02-16 | PRO-IR-MF-140 |  |  |  | -113d | 0d | physical units [101.83 h] | NLI |
| PRO-IR-1DL-150 |  | 1ST Material Delivery for Site Furnishings (Seating Bench,Stone Boulders and Gravel) | 6d | 2027-02-17 | 2027-02-23 | PRO-IR-MF-150, PRO-IR-1DL-140 |  |  |  | -103d | 4d | physical units [101.83 h] | NLI |
|  | DL | **Material Delivery & Site Inspection** |  | 2027-02-17 | 2027-03-15 |  |  |  |  |  |  |  |  |
|  | 1 | **Main Line Pipes** |  | 2027-02-17 | 2027-03-15 |  |  |  |  |  |  |  |  |
| PRO-R25-IR-DL-140 |  | Material Delivery & Site Inspection of Softscape and Planting Works | 10d | 2027-02-17 | 2027-02-28 | PRO-R25-SD-DL-140, PRO-IR-1DL-140 |  |  |  | -113d | 0d | Neem Tree, T01 Tree; Cassia Glauca Tree, T02 Tree; Ponciana Tree, T03 Tree; Dodonaea Viscosa, S01 Shrubs 400-500mm, 4plant/m2; Vitex Angus-Cactus, S02 Shrubs 400-500mm, 5plant/m2; Pennisetum Rubrum , S03 Shrubs 400-500mm, 5plant/m2; sesuvium portulacastrum green carpet, GC01 Ground Cover; Catharanthus Roseus 150-200mm, GC02 Ground Cover; physical units [169.72 h] | NLI |
| PRO-R25-IR-DL-150 |  | Material Delivery & Site Inspection of Site Furnishings (Seating Bench,Stone Boulders and Gravel) | 10d | 2027-03-01 | 2027-03-15 | PRO-IR-1DL-150, PRO-R25-IR-DL-140 |  |  |  | -107d | 0d | Seating Bench; Riyadh Stone Boulders 450mm thick; Gravel Mulch 150mm Beige; Gravel Mulch 150mm White; Gravel Ponds Bed - MARL MIX 500-600mm; Trash/ Recycle Bins; physical units [169.72 h] | NLI |
|  | LL | **Long Lead Time Items** |  | 2026-09-01 | 2027-06-30 |  |  |  |  |  |  |  |  |
|  | 1 | **Superstructure Works** |  | 2026-09-01 | 2027-06-30 |  |  |  |  |  |  |  |  |
|  | SL | **Sewage Pump Station** |  | 2026-09-01 | 2027-01-13 |  |  |  |  |  |  |  |  |
|  | 1 | **Issuance of Purchase Orders** |  | 2026-09-01 | 2026-09-03 |  |  |  |  |  |  |  |  |
| PRO-SPS-LL-PO-10 |  | Issuance of Purchase Order for Electromechanical Works for Pump Station | 6d | 2026-09-01 A | 2026-09-03 A | ENG-MT-SPS-MC-A-110, PRO-LV-DP-PO-100, PRO-LV-DP-PO-110 SS | 100% | 2026-11-25 | 2026-12-01 |  |  | physical units [101.83 h] | NLI |
|  | 2 | **Manufacturing of Material** |  | 2026-09-05 | 2026-11-02 |  |  |  |  |  |  |  |  |
| PRO-SPS-LL-MF-10 |  | Manufacturing of Electromechanical Works for Pump Station | 100d | 2026-09-05 A | 2026-11-02 A | PRO-SPS-LL-PO-10 | 100% | 2026-12-02 | 2027-03-31 |  |  | physical units [1697.23 h] | NLI |
|  | 3 | **Material Shipping/Custom Clearance/Delivery** |  | 2026-11-25 | 2026-12-19 |  |  |  |  |  |  |  |  |
| PRO-SPS-LL-SH/DL-10 |  | Material Delivery for Electromechanical Works for Pump Station | 21d | 2026-11-25 | 2026-12-19 | PRO-SPS-LL-MF-10 |  |  |  | -12d | 0d | physical units [356.42 h] | LLI |
|  | 4 | **Material Site Inspection** |  | 2026-12-20 | 2027-01-13 |  |  |  |  |  |  |  |  |
| PRO-SPS-LL-MSI-10 |  | Material Site Inspection for Electromechanical Works for Pump Station | 22d | 2026-12-20 | 2027-01-13 | PRO-SPS-LL-SH/DL-10 |  |  |  | -12d | 0d | physical units [373.39 h] | NLI |
|  | SL1 | **Water Pump Station** |  | 2026-09-01 | 2027-01-12 |  |  |  |  |  |  |  |  |
|  | 1 | **Issuance of Purchase Orders** |  | 2026-09-01 | 2026-09-03 |  |  |  |  |  |  |  |  |
| PRO-LS-LL-PO-20 |  | Issuance of Purchase Order for Electromechanical Works for Water Pump Station | 7d | 2026-09-01 A | 2026-09-03 A | ENG-MT-SPS-MC-A-110, PRO-LS-CV-PO-20, PRO-SPS-LL-PO-10 | 100% | 2026-12-02 | 2026-12-09 |  |  | physical units [118.81 h] | NLI |

| ID | WBS | Activity | Duration | Start | Finish | Predecessors | Complete | Remaining | Planned start | Planned finish | Total float | Free float | Resources | Cost | Actual cost | 01- Network | Planned % Upto date |
| --- | --- | --- | --- | --- | --- | --- | --- | --- | --- | --- | --- | --- | --- | --- | --- | --- | --- |
|  | 2 | **Manufacturing of Material** |  | 2026-09-06 | 2026-11-02 |  |  |  |  |  |  |  |  |  |  |  |  |
| PRO-LS-LL-MF-20 |  | Manufacturing of Electromechanical Works for Water Pump Station | 70d | 2026-09-06 A | 2026-11-02 A | PRO-LS-LL-PO-20 | 100% |  | 2026-12-10 | 2027-03-01 |  |  | physical units [1188.06 h] |  |  | NLI |  |
|  | 3 | **Material Shipping/Custom Clearance/Delivery** |  | 2026-11-25 | 2026-12-19 |  |  |  |  |  |  |  |  |  |  |  |  |
| PRO-LS-LL-SH/DL-20 |  | Material Delivery for Electromechanical Works for Water Pump Station | 21d | 2026-11-25 | 2026-12-19 | PRO-LS-LL-MF-20 |  |  |  |  | -11d | 0d | physical units [356.42 h] |  |  | LLI |  |
|  | 4 | **Material Site Inspection** |  | 2026-12-20 | 2027-01-12 |  |  |  |  |  |  |  |  |  |  |  |  |
| PRO-LS-LL-MSI-20 |  | Material Site Inspection for Electromechanical Works for Water Pump Station | 21d | 2026-12-20 | 2027-01-12 | PRO-LS-LL-SH/DL-20 |  |  |  |  | -11d | 1d | physical units [356.42 h] |  |  | NLI |  |
|  | SL2 | **Storage Tank (TSE)** |  | 2026-12-07 | 2027-06-30 |  |  |  |  |  |  |  |  |  |  |  |  |
|  | 1 | **Issuance of Purchase Orders** |  | 2026-12-07 | 2026-12-14 |  |  |  |  |  |  |  |  |  |  |  |  |
| PRO-TSE-LL-PO-30 |  | Issuance of Purchase Order for Electromechanical Works for Storage Tank (TSE) | 7d | 2026-12-07 | 2026-12-14 | ENG-MT-TSE-MC-A-120, PRO-TSE-CV-PO-30, PRO-LS-LL-PO-20 |  |  |  |  | -109d | 0d | physical units [118.81 h] |  |  | NLI |  |
|  | 2 | **Manufacturing of Material** |  | 2026-12-15 | 2027-05-06 |  |  |  |  |  |  |  |  |  |  |  |  |
| PRO-TSE-LL-MF-30 |  | Manufacturing of Electromechanical Works for Storage Tank (TSE) | 120d | 2026-12-15 | 2027-05-06 | PRO-TSE-LL-PO-30 |  |  |  |  | -109d | 0d | physical units [2036.68 h] |  |  | NLI |  |
|  | 3 | **Material Shipping/Custom Clearance/Delivery** |  | 2027-05-08 | 2027-06-06 |  |  |  |  |  |  |  |  |  |  |  |  |
| PRO-TSE-LL-SH/DL-30 |  | Material Delivery for Electromechanical Works for Storage Tank (TSE) | 21d | 2027-05-08 | 2027-06-06 | PRO-TSE-LL-MF-30 |  |  |  |  | -109d | 0d | physical units [356.42 h] |  |  | LLI |  |
|  | 4 | **Material Site Inspection** |  | 2027-06-07 | 2027-06-30 |  |  |  |  |  |  |  |  |  |  |  |  |
| PRO-TSE-LL-MSI-30 |  | Material Site Inspection for Electromechanical Works for Storage Tank (TSE) | 21d | 2027-06-07 | 2027-06-30 | PRO-TSE-LL-SH/DL-30 |  |  |  |  | -109d | 0d | physical units [356.42 h] |  |  | MA |  |
|  | CON | **Construction Works** |  | 2026-03-10 | 2027-07-05 |  |  |  |  |  |  |  |  |  |  |  |  |
|  | INF | **Infrastructure Networks** |  | 2026-03-10 | 2027-07-05 |  |  |  |  |  |  |  |  |  |  |  |  |
|  | IN | **Internal** |  | 2026-03-10 | 2027-07-05 |  |  |  |  |  |  |  |  |  |  |  |  |
|  | 1 | **Alignment-RD-01** |  | 2026-03-10 | 2027-06-14 |  |  |  |  |  |  |  |  |  |  |  |  |
|  | EW | **Earthworks** |  | 2026-03-10 | 2027-01-20 |  |  |  |  |  |  |  |  |  |  |  |  |
|  | EW | **Earthworks** |  | 2026-03-10 | 2027-01-20 |  |  |  |  |  |  |  |  |  |  |  |  |
| CO-EW-210 |  | Excavation and Backfilling Works Upto Design Level for Earthworks for Alignment-RD-01(Completed) | 81d | 2026-03-10 A | 2026-06-22 A | MS-CS-PS SS, MOB-30 SS, MOB-20 SS, MOB-80 SS, MOB-40 SS, MOB-50 SS, MOB-60 SS, MOB-10 SS, MOB-70 SS, PRE-CON-MDC-10 SS, PRE-CON-MDC-20 SS, PRE-CON-MDC-30 SS, PRE-CON-MDC-40 SS, PRE-CON-MDC-50 SS, PRE-CON-MDC-60 SS, PRE-CON-MDC-70 SS, PRE-CON-MDC-80 SS, MS-CS-IR SS | 100% |  | 2026-03-10 | 2026-06-21 |  |  | Skilled Labor [907.85 h]; Unskilled Labor [907.85 h]; Dozer [907.85 h]; Water Tanker [907.85 h]; Excavations (including Roads , Plots and Pond) [7253.6]; Embankments to the Site and Roads (including Roads , Plots and Pond) [9990.1] | 379,596.25 | 379,596.25 | FE | 10.3 |
| CO-EW-210_R |  | Excavation and Backfilling Works Upto Design Level for Earthworks for Alignment-RD-01(Remaining) | 20d | 2026-07-01 A | 2026-07-15 A | MS-CS-IR SS, CO-EW-210, PRO-SD-PO-110, MS-MM-120, MS-CS-PS SS, MOB-30 SS, MOB-20 SS, MOB-80 SS, MOB-40 SS, MOB-50 SS, MOB-60 SS, MOB-10 SS, MOB-70 SS, PRE-CON-MDC-10 SS, PRE-CON-MDC-20 SS, PRE-CON-MDC-30 SS, PRE-CON-MDC-40 SS, PRE-CON-MDC-50 SS, PRE-CON-MDC-60 SS, PRE-CON-MDC-70 SS, PRE-CON-MDC-80 SS | 100% |  | 2026-09-12 | 2026-10-05 |  |  | Skilled Labor [66.02 h]; Unskilled Labor [66.02 h]; Dozer [66.02 h]; Water Tanker [66.02 h]; Excavations (including Roads , Plots and Pond) [527]; Embankments to the Site and Roads (including Roads , Plots and Pond) [54502] | 1,772,616.18 | 1,772,616.18 | FE | 10.3 |
| CO-EW-210_R01 |  | Excavation and Backfilling Works Upto Design Level for Earthworks for Alignment-RD-01(Remaining)-part1 | 20d | 2026-08-31 A | 2027-01-20 | CO-EW-210_R, CO-SD-ML-220 | 35% | 15d | 2026-11-10 | 2026-12-02 | -56d | 0d | Skilled Labor [594.13 h]; Unskilled Labor [594.13 h]; Dozer [594.13 h]; Water Tanker [594.13 h]; Excavations (including Roads , Plots and Pond) [613]; Embankments to the Site and Roads (including Roads , Plots and Pond) [78308.1] | 2,545,782.46 | 903,443.08 | FE | 10.3 |

| ID | WBS | Activity | Duration | Start | Finish | Predecessors | Complete | Remaining | Planned start | Planned finish | Total float | Free float | Resources | Cost | Actual cost | Activity ID N | 01- Network |
| --- | --- | --- | --- | --- | --- | --- | --- | --- | --- | --- | --- | --- | --- | --- | --- | --- | --- |
|  | SD | **Storm Drainage Network** |  | 2026-10-20 | 2026-12-31 |  |  |  |  |  |  |  |  |  |  |  |  |
|  | MH | **Manholes** |  | 2026-11-02 | 2026-11-09 |  |  |  |  |  |  |  |  |  |  |  |  |
| CO-SD-MH-230 |  | Trench Excavation and Bedding Works for Manholes of Storm Drainage Network for Alignment-RD-01 | 12d | 2026-11-02 A | 2026-11-08 A | ENG-MT-SD-ML-A-100, MS-CS-SD SS, ENG-MS-SD-ML-A-110, ENG-MT-SD-ML-A-110, ENG-SH-SD-ML-A-110, MS-MM-130, MS-MM-140, MS-CF-EBL, MS-CF-MOB | 100% |  | 2026-11-02 | 2026-11-15 |  |  | Skilled Labor [58 h]; Unskilled Labor [58 h]; Excavator [58 h]; MH depth 1.5 - 2.5m [0.67]; MH depth 2.5 - 3.5m [0.52]; MH depth 3.5 - 4.5m [0.37]; MH depth > 4.50m; MH depth 2.5 -3.5m [0.37]; MH depth > 3.50m [0.07] | 22,703.02 | 22,703.02 | CO-R26.S11-SD-180 | SD |
| CO-SD-MH-240 |  | Install RC Footing Works for Manholes of Storm Drainage Network for Alignment-RD-01 | 9d | 2026-11-02 A | 2026-11-09 A | CO-SD-MH-230, PRO-R25-SD-DL-100 FF, PRO-SD-1DL-100 | 100% |  | 2026-11-19 | 2026-11-29 |  |  | Carpenter [96 h]; Steel fixer [96 h]; MH depth 1.5 - 2.5m [3.36]; MH depth 2.5 - 3.5m [2.61]; MH depth 3.5 - 4.5m [1.87]; MH depth > 4.50m; MH depth 2.5 -3.5m [1.87]; MH depth > 3.50m [0.37] | 113,515.12 | 113,515.12 | CO-R26.S11-SD-190 | SD |
| CO-SD-MH-250 |  | Install RC Wall Rings & Slab Works for Manholes of Storm Drainage Network for Alignment-RD-01 | 7d | 2026-11-02 A | 2026-11-09 A | CO-SD-MH-240, PRO-SD-1DL-100 | 100% |  | 2026-11-30 | 2026-12-07 |  |  | Carpenter [96 h]; Steel fixer [96 h]; MH depth 1.5 - 2.5m [4.03]; MH depth 2.5 - 3.5m [3.13]; MH depth 3.5 - 4.5m [2.24]; MH depth > 4.50m; MH depth 2.5 -3.5m [2.24]; MH depth > 3.50m [0.45] | 136,218.14 | 136,218.14 | CO-R26.S11-SD-200 | SD |
| CO-SD-MH-260 |  | Backfilling Works for Manholes of Storm Drainage Network for Alignment-RD-01 | 10d | 2026-11-02 A | 2026-11-09 A | CO-SD-MH-250 | 100% |  | 2026-12-08 | 2026-12-19 |  |  | Skilled Labor [112 h]; Water Tanker [112 h]; Loader [112 h]; MH depth 1.5 - 2.5m [2.01]; MH depth 2.5 - 3.5m [1.57]; MH depth 3.5 - 4.5m [1.12]; MH depth > 4.50m; MH depth 2.5 -3.5m [1.12]; MH depth > 3.50m [0.22] | 68,109.07 | 68,109.07 | CO-R26.S11-SD-220 | SD |
|  | ML | **Main Line Sections** |  | 2026-10-20 | 2026-11-09 |  |  |  |  |  |  |  |  |  |  |  |  |
| CO-SD-ML-140 |  | Trench Excavation and Bedding Works for Main Lines of Storm Drainage Network for Alignment-RD-01 | 8d | 2026-10-20 A | 2026-11-08 A | ENG-SH-SD-ML-A-110, ENG-MS-SD-ML-A-110, ENG-MT-SD-ML-A-110, MS-CS-SD SS, MS-MM-130, MS-MM-140, CO-SD-MH-250 SS, CO-SD-MH-230 SS, CO-SD-MH-230 FF | 100% |  | 2026-11-23 | 2026-12-01 |  |  | Skilled Labor [224 h]; Unskilled Labor [224 h]; Excavator [224 h]; Depth Between 0m to 1.50m [149.55]; Depth Between 1.50m to 2.50m [69]; Depth Between 2.50m to 3.50m [6.27]; Depth > 3.50m [3.36]; Depth Between 0m to 1.50m; Depth Between 1.50m to 2.50m [9.79]; Depth Between 2.50m to 3.50m; Depth > 3.50m; Depth Between 0m to 1.50m [6.12]; Depth Between 1.50m to 2.50m [18.19]; Depth Between 2.50m to 3.50m [13.43]; Depth Between 3.50m to 4.50m [47.24]; Depth > 4.50m [3.58]; Depth Between 1.50m to 2.50m; Depth Between 3.50m to 4.50m; Depth > 4.50m; Depth Between 2.50m to 3.50m [14.1]; Depth Between 0m to 1.50m [2.24]; Depth Between 1.50m to 2.50m [9.7]; Depth Between 2.50m to 3.50m [15]; GRP Pipe, 900mm diameter with Depth Between 3.51m to 4.50m [0.9] | 209,385.28 | 209,385.28 |  | SD |
| CO-SD-ML-150 |  | Pipes Laying Works for Main Lines of Storm Drainage Network for Alignment-RD-01 | 8d | 2026-10-20 A | 2026-11-09 A | CO-SD-ML-140 SS, PRO-R25-SD-DL-120 SS, PRO-SD-1DL-110, CO-SD-MH-250 | 100% |  | 2026-12-01 | 2026-12-09 |  |  | Skilled Labor [336 h]; Unskilled Labor [168 h]; Plumber [168 h]; Excavator [168 h]; Depth Between 0m to 1.50m [747.76]; Depth Between 1.50m to 2.50m [344.97]; Depth Between 2.50m to 3.50m [18.81]; Depth > 3.50m [10.07]; Depth Between 0m to 1.50m; Depth Between 1.50m to 2.50m [48.99]; Depth Between 2.50m to 3.50m; Depth > 3.50m; Depth Between 0m to 1.50m [30.6]; Depth Between 1.50m to 2.50m [90.99]; Depth Between 2.50m to 3.50m [40.3]; Depth Between 3.50m to 4.50m [141.72]; Depth > 4.50m [10.75]; Depth Between 1.50m to 2.50m; Depth Between 3.50m to 4.50m; Depth > 4.50m; Depth Between 2.50m to 3.50m [42.31]; Depth Between 0m to 1.50m [11.19]; Depth Between 1.50m to 2.50m [48.51]; Depth Between 2.50m to 3.50m [45]; GRP Pipe, 900mm diameter with Depth Between 3.51m to 4.50m [4.48] | 933,290.97 | 933,290.97 |  | SD |
| CO-SD-ML-160 |  | Trench Backfilling and Compaction Works for Main Lines of Storm Drainage Network for Alignment-RD-01 | 8d | 2026-10-20 A | 2026-11-09 A | CO-SD-ML-150, CO-SD-MH-260 FF | 100% |  | 2026-12-10 | 2026-12-19 |  |  | Skilled Labor [224 h]; Water Tanker [224 h]; Loader [224 h]; Compactor [224 h]; Depth Between 0m to 1.50m [299.1]; Depth Between 1.50m to 2.50m [137.99]; Depth Between 2.50m to 3.50m [8.36]; Depth > 3.50m [4.48]; Depth Between 0m to 1.50m; Depth Between 1.50m to 2.50m [19.6]; Depth Between 2.50m to 3.50m; Depth > 3.50m; Depth Between 0m to 1.50m [12.24]; Depth Between 1.50m to 2.50m [36.39]; Depth Between 2.50m to 3.50m [17.91]; Depth Between 3.50m to 4.50m [62.99]; Depth > 4.50m [4.78]; Depth Between 1.50m to 2.50m; Depth Between 3.50m to 4.50m; Depth > 4.50m; Depth Between 2.50m to 3.50m [18.81]; Depth Between 0m to 1.50m [4.48]; Depth Between 1.50m to 2.50m [19.4]; Depth Between 2.50m to 3.50m [20]; GRP Pipe, 900mm diameter with Depth Between 3.51m to 4.50m [1.79] | 380,890.17 | 380,890.17 |  | SD |
|  | CB | **Catch Basin Sections** |  | 2026-11-02 | 2026-12-31 |  |  |  |  |  |  |  |  |  |  |  |  |
| CO-SD-CB-190 |  | Installation and Pipes Laying Connection Works for Catch Basins of Storm Drainage Network for Alignment-RD-01 | 7d | 2026-11-02 A | 2026-12-23 | CO-SD-CB-180, PRO-R25-SD-DL-110 FF, PRO-R25-SD-DL-130 FF, PRO-SD-1DL-130, PRO-SD-1DL-120 | 43% | 7d | 2026-12-27 | 2027-01-03 | -75d | 0d | Skilled Labor [112 h]; Unskilled Labor [56 h]; Plumber [56 h]; Excavator [56 h]; Single Catch Basin 1000mm x 1000mm [46.49]; Double Catch Basin 1200mm x 2300mm [1.57] | 250,178.25 |  |  | SD |
| CO-SD-CB-200 |  | Trench Backfilling and Compaction Works for Catch Basins of Storm Drainage Network for Alignment-RD-01 | 7d | 2026-11-02 A | 2026-12-31 | CO-SD-CB-190 | 43% | 7d | 2027-01-04 | 2027-01-11 | -75d | 0d | Skilled Labor [56 h]; Water Tanker [56 h]; Loader [56 h]; Compactor [56 h]; Single Catch Basin 1000mm x 1000mm [13.28]; Double Catch Basin 1200mm x 2300mm [0.45] | 71,479.5 |  |  | SD |
| CO-SD-CB-180 |  | Trench Excavation and Bedding Works for Catch Basins of Storm Drainage Network for Alignment-RD-01 | 8d | 2026-11-03 A | 2026-12-15 | ENG-MT-SD-CB-A-110, ENG-SH-SD-CB-A-110, ENG-MS-SD-CB-A-110, MS-CS-SD SS, CO-SD-ML-160 SS, MS-MM-130, MS-MM-140 | 43% | 8d | 2026-12-17 | 2026-12-26 | -75d | 0d | Skilled Labor [56 h]; Unskilled Labor [56 h]; Excavator [56 h]; Single Catch Basin 1000mm x 1000mm [19.93]; Double Catch Basin 1200mm x 2300mm [0.67] | 107,219.25 |  |  | SD |
|  | SW | **Sewage Network** |  | 2026-10-27 | 2027-02-14 |  |  |  |  |  |  |  |  |  |  |  |  |
|  | 1 | **Manholes** |  | 2026-11-02 | 2027-02-14 |  |  |  |  |  |  |  |  |  |  |  |  |
| CO-SW-MH-210 |  | Excavation Works for Main Line Manholes of Sewage Network for Alignment-RD-01 | 12d | 2026-11-02 A | 2026-12-20 | ENG-MT-SW-ML-A-100, ENG-SH-SW-ML-A-110, MS-CS-SW SS, MS-MM-130, MS-MM-140, ENG-MS-SW-ML-A-110, CO-SD-MH-260, CO-SD-ML-160 | 50% | 12d | 2026-12-07 | 2026-12-20 | -91d | 0d | Skilled Labor [56 h]; Unskilled Labor [112 h]; Excavator [56 h]; Depth: 0 - 1.5m [0.45]; Depth: 1.51 - 2.5m [1.04]; Depth: 2.51 - 3.5m [0.52]; Depth: 3.51 - 4.5m [0.22]; Depth: 4.51 - 5.5m [0.07]; Depth > 5.50m [0.22] | 17,614.2 |  | CO-R26.S11-SW-160 | SW |
| CO-SW-MH-220 |  | Installation RC Footing Works for Main Line Manholes of Sewage Network for Alignment-RD-01 | 12d | 2026-11-02 A | 2027-01-03 | CO-SW-MH-210, PRO-SW-1DL-110, PRO-R25-SW-DL-110 | 50% | 12d | 2026-12-21 | 2027-01-03 | -91d | 0d | Carpenter [112 h]; Steel fixer [112 h]; Depth: 0 - 1.5m [2.24]; Depth: 1.51 - 2.5m [5.22]; Depth: 2.51 - 3.5m [2.61]; Depth: 3.51 - 4.5m [1.12]; Depth: 4.51 - 5.5m [0.37]; Depth > 5.50m [1.12] | 88,071.01 |  | CO-R26.S11-SW-170 | SW |
| CO-SW-MH-230 |  | Install Grp Liner Wall Works for Main Line Manholes of Sewage Network for Alignment-RD-01 | 12d | 2026-11-02 A | 2027-01-17 | CO-SW-MH-220 | 50% | 12d | 2027-01-04 | 2027-01-17 | -91d | 0d | Skilled Labor [336 h]; Plumber [336 h]; Depth: 0 - 1.5m [1.34]; Depth: 1.51 - 2.5m [3.13]; Depth: 2.51 - 3.5m [1.57]; Depth: 3.51 - 4.5m [0.67]; Depth: 4.51 - 5.5m [0.22]; Depth > 5.50m [0.67] | 52,842.61 |  | CO-R26.S11-SW-180 | SW |
| CO-SW-MH-240 |  | Pouring Grp Liner Wall Works for Main Line Manholes of Sewage Network for Alignment-RD-01 | 12d | 2026-11-02 A | 2027-01-31 | CO-SW-MH-230 | 50% | 12d | 2027-01-18 | 2027-01-31 | -91d | 0d | Carpenter [224 h]; Steel fixer [224 h]; Depth: 0 - 1.5m [1.34]; Depth: 1.51 - 2.5m [3.13]; Depth: 2.51 - 3.5m [1.57]; Depth: 3.51 - 4.5m [0.67]; Depth: 4.51 - 5.5m [0.22]; Depth > 5.50m [0.67] | 52,842.61 |  | CO-R26.S11-SW-190 | SW |
| CO-SW-MH-250 |  | Backfilling Works for Main Line Manholes of Sewage Network for Alignment-RD-01 | 12d | 2026-11-02 A | 2027-02-14 | CO-SW-MH-240 | 50% | 12d | 2027-02-01 | 2027-02-14 | -91d | 0d | Skilled Labor [56 h]; Water Tanker [56 h]; Loader [56 h]; Depth: 0 - 1.5m [1.34]; Depth: 1.51 - 2.5m [3.13]; Depth: 2.51 - 3.5m [1.57]; Depth: 3.51 - 4.5m [0.67]; Depth: 4.51 - 5.5m [0.22]; Depth > 5.50m [0.67] | 52,842.61 |  | CO-R26.S11-SW-200 | SW |
|  | ML | **Main Line Sections** |  | 2026-10-27 | 2027-02-14 |  |  |  |  |  |  |  |  |  |  |  |  |
| CO-SW-ML-140 |  | Trench Excavation and Bedding Works for Main Lines of Sewage Network for Alignment-RD-01 | 8d | 2026-10-27 A | 2027-01-10 | CO-SD-CB-200, ENG-SH-SW-ML-A-110, ENG-MS-SW-ML-A-110, ENG-MT-SW-ML-A-110, MS-CS-SW SS, CO-EW-210_R, MS-MM-130, MS-MM-140, CO-SW-MH-220 SS | 50% | 8d | 2027-01-07 | 2027-01-16 | -75d | 0d | Skilled Labor [112 h]; Unskilled Labor [112 h]; Excavator [112 h]; Depth Between 0m to 1.50m [17.46]; Depth Between 1.50m to 2.50m [29.6]; Depth > 2.50m [1.46]; Depth Between 0m to 1.50m [6.3]; Depth Between 1.50m to 2.50m [58.21]; Depth Between 2.50m to 3.50m [112.06]; Depth Between 3.50m to 4.50m [4.48]; Depth Between 4.50m to 5.50m [3.36]; Depth > 5.50m [2.24]; HDPE Force Main (PE 100, SDR 11, PN 16 bar) DN 160 mm diameter, in trenches depth: 0- 1.5m [33.73]; HDPE Force Main (PE 100, SDR 11, PN 16 bar) DN 160 mm diameter, in trenches depth: 1.51- 2.5m [61.19]; Air valves with dia 50 mm [0.15]; Gate valves Dia 50 mm [0.15]; Air valve chamber (1000x 1000 mm) [0.15] | 79,139.05 |  |  | SW |
| CO-SW-ML-150 |  | Pipes Laying Works for Main Lines of Sewage Network for Alignment-RD-01 | 8d | 2026-10-27 A | 2027-01-19 | CO-SW-ML-140, PRO-SW-1DL-100, PRO-R25-SW-DL-100 | 50% | 8d | 2027-01-17 | 2027-01-25 | -75d | 16d | Skilled Labor [112 h]; Unskilled Labor [112 h]; Plumber [112 h]; Excavator [112 h]; Depth Between 0m to 1.50m [87.31]; Depth Between 1.50m to 2.50m [147.96]; Depth > 2.50m [4.37]; Depth Between 0m to 1.50m [31.54]; Depth Between 1.50m to 2.50m [291.04]; Depth Between 2.50m to 3.50m [336.16]; Depth Between 3.50m to 4.50m [13.43]; Depth Between 4.50m to 5.50m [10.07]; Depth > 5.50m [6.72]; HDPE Force Main (PE 100, SDR 11, PN 16 bar) DN 160 mm diameter, in trenches depth: 0- 1.5m [168.66]; HDPE Force Main (PE 100, SDR 11, PN 16 bar) DN 160 mm diameter, in trenches depth: 1.51- 2.5m [305.97]; Air valves with dia 50 mm [0.75]; Gate valves Dia 50 mm [0.75]; Air valve chamber (1000x 1000 mm) [0.75] | 323,561.51 |  |  | SW |
| CO-SW-ML-160 |  | Trench Backfilling and Compaction Works for Main Lines of Sewage Network for Alignment-RD-01 | 6d | 2026-10-27 A | 2027-02-14 | CO-SW-ML-150, CO-SW-MH-250 FF | 50% | 6d | 2027-02-23 | 2027-03-01 | -91d | 0d | Skilled Labor [168 h]; Water Tanker [168 h]; Loader [168 h]; Compactor [168 h]; Depth Between 0m to 1.50m [34.93]; Depth Between 1.50m to 2.50m [59.18]; Depth > 2.50m [1.94]; Depth Between 0m to 1.50m [12.61]; Depth Between 1.50m to 2.50m [116.42]; Depth Between 2.50m to 3.50m [149.4]; Depth Between 3.50m to 4.50m [5.97]; Depth Between 4.50m to 5.50m [4.48]; Depth > 5.50m [2.99]; HDPE Force Main (PE 100, SDR 11, PN 16 bar) DN 160 mm diameter, in trenches depth: 0- 1.5m [67.46]; HDPE Force Main (PE 100, SDR 11, PN 16 bar) DN 160 mm diameter, in trenches depth: 1.51- 2.5m [122.39]; Air valves with dia 50 mm [0.3]; Gate valves Dia 50 mm [0.3]; Air valve chamber (1000x 1000 mm) [0.3] | 134,229.93 |  |  | SW |

| ID | WBS | Activity | Duration | Start | Finish | Predecessors | Total float | Free float | Resources | Cost | 01- Network | Activity ID N |
| --- | --- | --- | --- | --- | --- | --- | --- | --- | --- | --- | --- | --- |
|  | TSE | **Treated Sewage Effluent (Tse)** |  | 2026-11-09 | 2027-02-13 |  |  |  |  |  |  |  |
| CO-TSE-ML-200 |  | Trench Excavation and Bedding Works for Main Lines of Treated Sewage Effluent (Tse) for Alignment-RD-01 | 7d | 2026-11-09 | 2026-11-16 | ENG-SH-TSE-ML-A-120 SS, ENG-MS-TSE-ML-A-120 SS, ENG-MT-IR-ML-A-120 SS, MS-CS-TSE SS, CO-EW-210_R, MS-MM-130, MS-MM-140, CO-SD-MH-230, CO-SD-MH-260 | -55d | 0d | Skilled Labor [56 h]; Unskilled Labor [56 h]; Excavator [56 h]; Depth Between 0m to 1.50m; Depth Between 1.50m to 2.50m; Depth > 2.50m; Depth Between 0m to 1.50m [11.36]; Depth Between 1.50m to 2.50m [38.28]; Depth Between 0m to 1.50m [6.75]; Depth Between 1.50m to 2.50m [49.4]; Depth > 2.50m [1.79]; Gate valves dia 50 mm; Gate valves dia 100 mm; Gate valves dia 150 mm; Gate valves dia 200 mm; Air valves with dia 50 mm; Washout valve dia 100 mm; Wash out chamber (2500x 2500mm); Air valve chamber (1000x 1000 mm); Flow meter chamber (1500x 3000 mm); Flow meter dia 150 mm | 11,939.7 | TSE |  |
| CO-TSE-ML-210 |  | Pipes Laying Works for Main Lines of Treated Sewage Effluent (Tse) for Alignment-RD-01 | 17d | 2027-01-09 | 2027-01-27 | CO-TSE-ML-200, PRO-TSE-1DL-120, PRO-R25-TSE-DL-120 | -100d | 0d | Skilled Labor [112 h]; Unskilled Labor [56 h]; Plumber [56 h]; Excavator [56 h]; Depth Between 0m to 1.50m; Depth Between 1.50m to 2.50m; Depth > 2.50m; Depth Between 0m to 1.50m [56.79]; Depth Between 1.50m to 2.50m [191.4]; Depth Between 0m to 1.50m [33.75]; Depth Between 1.50m to 2.50m [247]; Depth > 2.50m [5.37] | 59,156.46 | TSE |  |
| CO-TSE-ML-230 |  | Trench Backfilling and Compaction Works for Treated Sewage Effluent (Tse) for Alignment-RD-01 | 14d | 2027-01-28 | 2027-02-13 | CO-TSE-ML-210 | -100d | 0d | Skilled Labor [56 h]; Water Tanker [56 h]; Loader [56 h]; Compactor [56 h]; Depth Between 0m to 1.50m; Depth Between 1.50m to 2.50m; Depth > 2.50m; Depth Between 0m to 1.50m [22.72]; Depth Between 1.50m to 2.50m [76.57]; Depth Between 0m to 1.50m [13.49]; Depth Between 1.50m to 2.50m [98.81]; Depth > 2.50m [2.39] | 23,699.21 | TSE |  |
|  | PW | **Potable Water Network** |  | 2026-11-09 | 2027-02-01 |  |  |  |  |  |  |  |
|  | ML | **Main Line Sections** |  | 2026-11-09 | 2027-02-01 |  |  |  |  |  |  |  |
| CO-PW-ML-140 |  | Trench Excavation and Bedding Works for Main Lines of Potable Water Network for Alignment-RD-01 | 6d | 2026-11-09 | 2026-11-15 | ENG-SH-PW-ML-A-110, ENG-MS-PW-ML-A-110, ENG-MT-PW-ML-A-100, MS-CS-PW SS, CO-EW-210_R, MS-MM-130, MS-MM-140, CO-TSE-ML-200 SS | -41d | 0d | Skilled Labor [96 h]; Unskilled Labor [96 h]; Excavator [96 h]; Depth Between 0m to 1.50m; Depth Between 1.50m to 2.50m; Depth > 2.50m; Depth Between 0m to 1.50m [36.57]; Depth Between 1.50m to 2.50m [53.28]; Depth > 2.50m [2.24]; Depth Between 0m to 1.50m [44.3]; Depth Between 1.50m to 2.50m [147.31]; Depth > 2.50m [4.48] | 45,473.08 | PW |  |
| CO-PW-ML-150 |  | Pipes Laying and accessories for Main Lines of Potable Water Network for Alignment-RD-01 | 6d | 2027-01-19 | 2027-01-25 | CO-PW-ML-140, PRO-PW-1DL-100 SS | -90d | 0d | Skilled Labor [192 h]; Unskilled Labor [192 h]; Plumber [192 h]; JCB [192 h]; Depth Between 0m to 1.50m; Depth Between 1.50m to 2.50m; Depth > 2.50m; Depth Between 0m to 1.50m [91.42]; Depth Between 1.50m to 2.50m [133.21]; Depth > 2.50m [3.36]; Depth Between 0m to 1.50m [110.75]; Depth Between 1.50m to 2.50m [368.28]; Depth > 2.50m [6.72] | 112,514.5 | PW |  |
| CO-PW-ML-160 |  | Trench Backfilling and Compaction Works for Main Lines of Potable Water Network for Alignment-RD-01 | 6d | 2027-01-26 | 2027-02-01 | CO-PW-ML-150 | -90d | 0d | Skilled Labor [96 h]; Water Tanker [96 h]; Loader [96 h]; Compactor [96 h]; Depth Between 0m to 1.50m; Depth Between 1.50m to 2.50m; Depth > 2.50m; Depth Between 0m to 1.50m [73.13]; Depth Between 1.50m to 2.50m [106.57]; Depth > 2.50m [2.99]; Depth Between 0m to 1.50m [88.6]; Depth Between 1.50m to 2.50m [294.63]; Depth > 2.50m [5.97] | 90,167.36 | PW |  |
|  | VC | **Valve Chamber** |  | 2026-11-11 | 2027-02-01 |  |  |  |  |  |  |  |
| CO-PW-VC-230 |  | Excavation Works for Main Line Valves and Valve Chambers of Potable Water Network for Alignment-RD-01 | 4d | 2026-11-11 | 2026-11-15 | ENG-MT-PW-ML-A-110, MS-CS-PW SS, CO-PW-ML-140 SS, CO-PW-ML-140 FF, MS-MM-130, MS-MM-140 | -41d | 0d | Unskilled Labor [32 h]; Excavator [32 h]; Gate valves Dia 50 mm; Gate valves Dia 100 mm [1.12]; Gate valves Dia 150 mm; Gate valves Dia 250 mm [0.37]; Air valves with Dia 50 mm [0.07]; Washout valve Dia 100 mm; Wash out chamber (2500x 2500mm); Air valve chamber (1000x 1000 mm) [0.07]; Flow meter chamber (1500x 2500 mm); Flow meter dia 100 mm | 3,905.34 | PW | CO-R26.S11-PW-170 |
| CO-PW-VC190 |  | Installation of Valve Chambers of Potable Water Network for Alignment-RD-01 | 4d | 2026-11-16 | 2026-11-19 | CO-PW-VC-230 | -35d | 0d | Skilled Labor [32 h]; Unskilled Labor [64 h]; Plumber [64 h]; Gate valves Dia 50 mm; Gate valves Dia 100 mm [11.64]; Gate valves Dia 150 mm; Gate valves Dia 250 mm [3.88]; Air valves with Dia 50 mm [0.78]; Washout valve Dia 100 mm; Wash out chamber (2500x 2500mm); Air valve chamber (1000x 1000 mm) [0.78]; Flow meter chamber (1500x 2500 mm); Flow meter dia 100 mm | 40,615.48 | PW | CO-R26.S11-PW-180 |
| CO-PW-VC-240 |  | Installation Works for Valves of Potable Water Network for Alignment-RD-01 | 4d | 2026-11-21 | 2026-11-24 | CO-PW-VC190 | -35d | 55d | Skilled Labor [32 h]; Unskilled Labor [64 h]; Plumber [64 h]; Gate valves Dia 50 mm; Gate valves Dia 100 mm [2.91]; Gate valves Dia 150 mm; Gate valves Dia 250 mm [0.97]; Air valves with Dia 50 mm [0.19]; Washout valve Dia 100 mm; Wash out chamber (2500x 2500mm); Air valve chamber (1000x 1000 mm) [0.19]; Flow meter chamber (1500x 2500 mm); Flow meter dia 100 mm | 10,153.87 | PW | CO-R26.S11-PW-190 |
| CO-PW-VC-250 |  | Backfilling Works for Main Line Valves and Valve Chambers of Potable Water Network for Alignment-RD-01 | 4d | 2027-01-28 | 2027-02-01 | CO-PW-VC-240, CO-PW-ML-160 FF | -90d | 0d | Unskilled Labor [32 h]; Excavator [32 h]; Gate valves Dia 50 mm; Gate valves Dia 100 mm [2.24]; Gate valves Dia 150 mm; Gate valves Dia 250 mm [0.75]; Air valves with Dia 50 mm [0.15]; Washout valve Dia 100 mm; Wash out chamber (2500x 2500mm); Air valve chamber (1000x 1000 mm) [0.15]; Flow meter chamber (1500x 2500 mm); Flow meter dia 100 mm | 7,810.67 | PW | CO-R26.S11-PW-220 |
|  | FH | **Fire Hydrant** |  | 2026-11-16 | 2027-02-01 |  |  |  |  |  |  |  |
| CO-PW-FH-170 |  | Excavation Works for Fire Hydrants of Potable Water Network for Alignment-RD-01 | 15d | 2026-11-16 | 2026-12-02 | CO-PW-VC-230, ENG-SH-PW-FH-A-110, ENG-MT-PW-FH-A-100, MS-CS-PW SS, CO-EW-210_R, MS-MM-130, MS-MM-140 | -41d | 46d | Skilled Labor [24 h]; Excavator [24 h]; 3-outlet fire hydrant (2 x 2.5 inch and 1 x 4.5 inch) in the form of a separate dry vacuum cylinder, complete according to drawings. [0.52] | 3,934.92 | PW |  |
| CO-PW-FH-180 |  | Installation Works for Fire Hydrant of Potable Water Network for Alignment-RD-01 | 3d | 2027-01-26 | 2027-01-28 | CO-PW-FH-170, PRO-PW-1DL-120 SS, CO-PW-ML-150 | -87d | 0d | Skilled Labor [24 h]; Unskilled Labor [48 h]; Plumber [48 h]; 3-outlet fire hydrant (2 x 2.5 inch and 1 x 4.5 inch) in the form of a separate dry vacuum cylinder, complete according to drawings. [6.79] | 51,154.01 | PW |  |
| CO-PW-FH-190 |  | Trench Backfilling and Compaction Works for Fire Hydrants of Potable Water Network for Alignment-RD-01 | 3d | 2027-01-30 | 2027-02-01 | CO-PW-FH-180, CO-PW-VC-250 FF | -80d | 11d | Skilled Labor [24 h]; Water Tanker [24 h]; Loader [24 h]; Compactor [24 h]; 3-outlet fire hydrant (2 x 2.5 inch and 1 x 4.5 inch) in the form of a separate dry vacuum cylinder, complete according to drawings. [1.04] | 7,869.85 | PW |  |
|  | IR | **Irrigation Network** |  | 2027-02-14 | 2027-03-30 |  |  |  |  |  |  |  |
|  | ML | **Main Line Pipes** |  | 2027-02-14 | 2027-03-30 |  |  |  |  |  |  |  |
| CO-IR-ML-150 |  | Trench Excavation and Bedding Works for Main Lines of Irrigation Network for Alignment-RD-01 | 7d | 2027-02-14 | 2027-02-21 | CO-TSE-ML-230, ENG-SH-IR-ML-A-110, ENG-MS-IR-ML-A-110, ENG-MT-IR-ML-A-100, MS-CS-IR SS, CO-EW-210_R, MS-MM-130, MS-MM-140, CO-PW-ML-160, CO-PW-VC-250, CO-PW-FH-180 | -100d | 0d | Unskilled Labor [64 h]; Excavator [64 h]; pipe line O.D 32 mm PN 10, in depth 0 to 1.5 m [246.27]; pipe line O.D 40 mm PN 10, in depth 0 to 1.5 m [223.88]; pipe line O.D 50 mm PN 10, in depth 0 to 1.5 m [67.16] | 13,843.5 | IR |  |
| CO-IR-ML-160 |  | Pipes Laying Works for Main Lines of Irrigation Network for Alignment-RD-01 | 8d | 2027-02-22 | 2027-03-02 | CO-IR-ML-150, PRO-IR-1DL-100, CO-PW-ML-150, PRO-R25-IR-DL-100 | -100d | 0d | Skilled Labor [32 h]; Unskilled Labor [64 h]; Plumber [32 h]; Excavator [32 h]; pipe line O.D 32 mm PN 10, in depth 0 to 1.5 m [1231.34]; pipe line O.D 40 mm PN 10, in depth 0 to 1.5 m [1119.4]; pipe line O.D 50 mm PN 10, in depth 0 to 1.5 m [335.82] | 69,217.5 | IR |  |
| CO-IR-ML-170 |  | Installation Works for Main Line Valves of Irrigation Network for Alignment-RD-01 | 7d | 2027-03-03 | 2027-03-14 | CO-IR-ML-160, ENG-MT-IR-ML-A-110, PRO-IR-1DL-110, PRO-R25-IR-DL-110 | -100d | 0d | Skilled Labor [32 h]; Unskilled Labor [64 h]; Plumber [64 h]; Gate valve 50 mm PN16 [13.43]; Direct Burried Gate valve 40 mm PN16 [8.96] | 21,301.8 | IR |  |
| CO-IR-ML-190 |  | Installation Works for Bulbblers And Sprinklers and Irrigation Control System of Irrigation Network for Alignment-RD-01 | 10d | 2027-03-15 | 2027-03-25 | CO-IR-ML-170 | -100d | 0d | Skilled Labor [200 h]; Unskilled Labor [400 h]; Plumber [400 h]; Pressure–compensating bubblers 110 Lit/Hr [1002.99]; Flushing Bronze gate valve dia 1.5" inside PVC box [23.88]; Air release valve 1.5" inside PVC box [23.88]; Extra flexible pressure compensating on surface inline dripline`s, O.D. is 16.1 mm [19701.5]; Electrical Solenoid Valve ( 1.5") inside PVC box [8.96]; Electrical Solenoid Valve ( 2") inside PVC box [14.93]; Quick coupling valve 1" inside a round valve box 10" size with a manual gate valve, hose swivel and key with all accessories [47.76]; Advanced Irrigation controller subject to client approval, can connect with Centarl Control system and cabable to integrate with Smart City systems,BMS or Scada system ,Can record the real flow rate per stations [1.49]; Decoder cables 12 AWG between valves and controllers, The cables shall be pulled through 32? UPVC conduit and inspection 10" round valve box every 100 meters, as per standard specification and drawings [3134.33]; Preparing the irrigation program for the entire system and providing technical services for monitoring and controlling the central irrigation systems by linking the controller with the Main Program System (by GSM). [1.49] | 469,470.84 | IR |  |
| CO-IR-ML-180 |  | Trench Backfilling and Compaction Works for Main Lines of Irrigation Network for Alignment-RD-01 | 4d | 2027-03-27 | 2027-03-30 | CO-IR-ML-190 | -100d | 0d | Skilled Labor [64 h]; Excavator [64 h]; pipe line O.D 32 mm PN 10, in depth 0 to 1.5 m [492.54]; pipe line O.D 40 mm PN 10, in depth 0 to 1.5 m [447.76]; pipe line O.D 50 mm PN 10, in depth 0 to 1.5 m [134.33] | 27,687 | IR |  |

| ID | WBS | Activity | Duration | Start | Finish | Predecessors | Total float | Free float | Resources | Cost | 01- Network | Activity ID N |
| --- | --- | --- | --- | --- | --- | --- | --- | --- | --- | --- | --- | --- |
|  | MV | **Medium Voltage Network** |  | 2027-02-15 | 2027-03-07 |  |  |  |  |  |  |  |
|  | CW | **Cabling Works** |  | 2027-02-15 | 2027-03-07 |  |  |  |  |  |  |  |
| CO-MV-ML-280 |  | Trench Excavation and Bedding Works for Medium Voltage Network for Alignment-RD-01 | 6d | 2027-02-15 | 2027-02-21 | ENG-SH-MV-A-110, ENG-MS-MV-A-110, MS-CS-MV SS, CO-PW-FH-190, CO-SW-ML-160, CO-SD-CB-200, CO-SD-ML-160, CO-SD-MH-260, CO-PW-VC-250, MS-MM-130, MS-MM-140, CO-PW-ML-160 | -91d | 0d | Skilled Labor [56 h]; Unskilled Labor [56 h]; Excavator [56 h]; Excavation for Trench size 40cm wide and 80cm deep (for 1 cable); Excavation for Trench Size 60cm wide and 80cm deep (for 2 cables); Excavation for Trench Size 90cm wide and 80cm deep (for 3 cables) [207.94]; Excavation for Trench Size 180cm wide and 80cm deep (for 6 cables) [92.42]; Excavation for Trench Size 210 cm wide and 80cm deep (for 7 cables) [107.82]; Excavation for Trench Size 240cm wide and 80cm deep (for 8 cables) [659.25] | 29,350.99 | MV |  |
| CO-MV-ML-290 |  | Duct Laying Works for Medium Voltage Network for Alignment-RD-01 | 6d | 2027-02-22 | 2027-02-28 | CO-MV-ML-280, PRO-MV-DL-100, PRO-MV-1DL-100 | -91d | 0d | Unskilled Labor [224 h]; Electrician [56 h]; JCB [56 h]; Duct bank for (33) cables [32.84]; Duct bank for (21) cables [19.7]; Duct bank for (15) cables; HV Cable Road Crossing [47.39] | 85,161.66 | MV |  |
| CO-MV-ML-300 |  | Trench Backfilling and Compaction Works for Medium Voltage Network for Alignment-RD-01 | 6d | 2027-03-01 | 2027-03-07 | CO-MV-ML-290 | -91d | 0d | Skilled Labor [112 h]; Water Tanker [56 h]; JCB [56 h]; Duct bank for (33) cables [14.93]; Duct bank for (21) cables [8.96]; Duct bank for (15) cables; HV Cable Road Crossing [21.54] | 38,708.73 | MV |  |
|  | LV | **Low Voltage Network** |  | 2027-03-23 | 2027-04-20 |  |  |  |  |  |  |  |
|  | MLVC | **Main Low Voltage Cables Works ( Cable 300 MM )** |  | 2027-03-23 | 2027-04-12 |  |  |  |  |  |  |  |
| CON-LV-ML-130 |  | Trench Excavation and Bedding Works for Main Cable of Low Voltage Network for Alignment-RD-01 | 6d | 2027-03-23 | 2027-03-29 | MS-CF-SW, CO-SD-CB-200, CO-PW-ML-160, ENG-SH-LV-A-120, ENG-MS-MV-A-120, MS-CS-LV SS, CO-MV-ML-300, CO-SW-ML-160, CO-EW-210_R, MS-MM-130, MS-MM-140 | -101d | 0d | Skilled Labor [56 h]; Unskilled Labor [56 h]; Excavator [56 h]; Road crossing ducts, 2 ways (2 x 150mm HDPE) [71.67]; Road crossing ducts, 2 ways (2 x 110mm UPVC) [28.48]; Road crossing ducts, 3 ways (3 x 110mm UPVC) [9.46] | 15,955.58 | LV |  |
| CON-LV-ML-140 |  | Cable Laying Works for Main Cable of Low Voltage Network for Alignment-RD-01 | 6d | 2027-03-30 | 2027-04-05 | CON-LV-ML-130, PRO-LV-ML-1DL-100, PRO-LV-ML-DL-100 | -101d | 0d | Skilled Labor [56 h]; Unskilled Labor [224 h]; Electrician [56 h]; JCB [56 h]; 4C-300mm2 CU/XLPE / PVC ARMORED CABLE [10.06]; 4C-240mm2 CU/XLPE / PVC ARMORED CABLE [5.75]; 4C-185mm2 CU/XLPE / PVC ARMORED CABLE [5.75]; 4C-50mm2 CU/XLPE / PVC ARMORED CABLE [21.55]; 4C-16mm2 CU/XLPE / PVC ARMORED CABLE [496.33]; 4C-16MM2 CU/XLPE / PVC CABLE [200.4]; 1Cx150sq.mm2,Cu, PVC wire [10.06]; 1Cx120sq.mm2,Cu, PVC wire [12.93]; 1Cx95sq.mm,Cu, PVC wire [5.75]; 1Cx70sq.mm2,Cu, PVC wire [2.88]; 1Cx25sq.mm2,Cu, PVC wire [12.93]; 1Cx16sq.mm2,Cu, PVC wire [496.33]; 1Cx10sq.mm2,Cu, PVC wire [4.31] | 45,209.23 | LV |  |
| CON-LV-ML-150 |  | Trench Backfilling and Compaction Works for Main Cable of Low Voltage Network for Alignment-RD-01 | 6d | 2027-04-06 | 2027-04-12 | CON-LV-ML-140 | -98d | 1d | Skilled Labor [176 h]; Water Tanker [88 h]; JCB [88 h]; 4C-300mm2 CU/XLPE / PVC ARMORED CABLE [4.57]; 4C-240mm2 CU/XLPE / PVC ARMORED CABLE [2.61]; 4C-185mm2 CU/XLPE / PVC ARMORED CABLE [2.61]; 4C-50mm2 CU/XLPE / PVC ARMORED CABLE [9.79]; 4C-16mm2 CU/XLPE / PVC ARMORED CABLE [225.61]; 4C-16MM2 CU/XLPE / PVC CABLE [91.09]; 1Cx150sq.mm2,Cu, PVC wire [4.57]; 1Cx120sq.mm2,Cu, PVC wire [5.88]; 1Cx95sq.mm,Cu, PVC wire [2.61]; 1Cx70sq.mm2,Cu, PVC wire [1.31]; 1Cx25sq.mm2,Cu, PVC wire [5.88]; 1Cx16sq.mm2,Cu, PVC wire [225.61]; 1Cx10sq.mm2,Cu, PVC wire [1.96] | 20,546.17 | LV |  |
|  | SLVC | **Service Low Voltage Cables Works ( Cable 70 MM )** |  | 2027-03-30 | 2027-04-20 |  |  |  |  |  |  |  |
| CON-LV-HC-130 |  | Trench Excavation and Bedding Works for Service Cable of Low Voltage Network for Alignment-RD-01 | 6d | 2027-03-30 | 2027-04-05 | CON-LV-ML-130, ENG-MS-MV-A-120, MS-CS-LV SS, CO-EW-210_R, ENG-SH-LV-A-120, MS-MM-130, MS-MM-140, CO-PW-ML-160, CO-PW-VC-250, CO-PW-FH-190, CO-TSE-ML-230, CO-SW-ML-160, CO-SD-CB-200, CO-SD-ML-160, CO-SD-MH-260 | -99d | 0d | Skilled Labor [48 h]; Unskilled Labor [48 h]; Excavator [48 h]; Road crossing ducts, 2 ways (2 x 150mm HDPE) [35.84]; Road crossing ducts, 2 ways (2 x 110mm UPVC) [14.24]; Road crossing ducts, 3 ways (3 x 110mm UPVC) [4.73] | 7,977.79 | LV |  |
| CON-LV-HC-140 |  | Cable Laying Works for Service Cable of Low Voltage Network for Alignment-RD-01 | 7d | 2027-04-06 | 2027-04-13 | CON-LV-HC-130, CON-LV-ML-140, PRO-LV-HC-1DL-100, PRO-LV-HC-DL-100 | -99d | 0d | Skilled Labor [56 h]; Unskilled Labor [224 h]; Electrician [56 h]; JCB [56 h]; 4C-300mm2 CU/XLPE / PVC ARMORED CABLE [10.06]; 4C-240mm2 CU/XLPE / PVC ARMORED CABLE [5.75]; 4C-185mm2 CU/XLPE / PVC ARMORED CABLE [5.75]; 4C-50mm2 CU/XLPE / PVC ARMORED CABLE [21.55]; 4C-16mm2 CU/XLPE / PVC ARMORED CABLE [496.33]; 4C-16MM2 CU/XLPE / PVC CABLE [200.4]; 1Cx150sq.mm2,Cu, PVC wire [10.06]; 1Cx120sq.mm2,Cu, PVC wire [12.93]; 1Cx95sq.mm,Cu, PVC wire [5.75]; 1Cx70sq.mm2,Cu, PVC wire [2.88]; 1Cx25sq.mm2,Cu, PVC wire [12.93]; 1Cx16sq.mm2,Cu, PVC wire [496.33]; 1Cx10sq.mm2,Cu, PVC wire [4.31] | 45,209.23 | LV |  |
| CON-LV-HC-150 |  | Trench Backfilling and Compaction Works for Service Cable of Low Voltage Network for Alignment-RD-01 | 6d | 2027-04-14 | 2027-04-20 | CON-LV-HC-140, CON-LV-ML-150 | -99d | 0d | Skilled Labor [192 h]; Water Tanker [96 h]; JCB [96 h]; 4C-300mm2 CU/XLPE / PVC ARMORED CABLE [4.57]; 4C-240mm2 CU/XLPE / PVC ARMORED CABLE [2.61]; 4C-185mm2 CU/XLPE / PVC ARMORED CABLE [2.61]; 4C-50mm2 CU/XLPE / PVC ARMORED CABLE [9.79]; 4C-16mm2 CU/XLPE / PVC ARMORED CABLE [225.61]; 4C-16MM2 CU/XLPE / PVC CABLE [91.09]; 1Cx150sq.mm2,Cu, PVC wire [4.57]; 1Cx120sq.mm2,Cu, PVC wire [5.88]; 1Cx95sq.mm,Cu, PVC wire [2.61]; 1Cx70sq.mm2,Cu, PVC wire [1.31]; 1Cx25sq.mm2,Cu, PVC wire [5.88]; 1Cx16sq.mm2,Cu, PVC wire [225.61]; 1Cx10sq.mm2,Cu, PVC wire [1.96] | 20,546.17 | LV |  |
|  | DP | **Distribution Pillars Works** |  | 2027-03-30 | 2027-04-06 |  |  |  |  |  |  |  |
| CON-LV-DP-130 |  | Foundation Excavation Works for Distribution Pillars of Low Voltage Network for Alignment-RD-01 | 7d | 2027-03-30 | 2027-04-06 | CON-LV-ML-130, ENG-MS-MV-A-120, MS-CS-LV SS, CO-EW-210_R, MS-MM-130, MS-MM-140 | -89d | 0d | Unskilled Labor [224 h]; Excavator [112 h]; Road crossing ducts, 2 ways (2 x 150mm HDPE) [11.94]; Road crossing ducts, 2 ways (2 x 110mm UPVC) [4.75]; Road crossing ducts, 3 ways (3 x 110mm UPVC) [1.58] | 2,659.17 | LV |  |
|  | SL | **Street Lighting Network** |  | 2027-02-22 | 2027-04-11 |  |  |  |  |  |  |  |
|  | LP | **Lighting Poles Works** |  | 2027-02-22 | 2027-03-24 |  |  |  |  |  |  |  |
| CO-SL-LP-350 |  | Installation Works for Lighting Poles Foundation of Street Lighting Network for Alignment-RD-01 | 8d | 2027-02-22 | 2027-03-02 | ENG-SH-SL-A-110, ENG-MS-SL-A-110, ENG-MT-SL-A-100, MS-CS-SL SS, CO-EW-210_R, MS-MM-130, MS-MM-140, CO-MV-ML-280, PRO-R25-SL-DL-110 | -84d | 5d | Unskilled Labor [80 h]; Excavator [40 h]; Lighting poles with 1 arm, height of (12) meters, including the power distribution box, cables, and RCC foundation.; Lighting poles with 2 arms, height of (12) meters, including the power distribution box, cables, and RCC foundation. [2.46] | 7,113.07 | SL |  |
| CO-SL-LP-360 |  | Installation Works for Lighting Poles of Street Lighting Network for Alignment-RD-01 | 5d | 2027-03-13 | 2027-03-17 | CO-SL-LP-350, ENG-MT-SL-A-110, PRO-R25-SL-DL-120 | -89d | 0d | Unskilled Labor [80 h]; Boom Truck [40 h]; Lighting poles with 1 arm, height of (12) meters, including the power distribution box, cables, and RCC foundation.; Lighting poles with 2 arms, height of (12) meters, including the power distribution box, cables, and RCC foundation. [8.21] | 23,710.22 | SL |  |
| CO-SL-LP-380 |  | Backfilling Works for Lighting Poles of Street Lighting Network for Alignment-RD-01 | 6d | 2027-03-18 | 2027-03-24 | CO-SL-LP-360 | -85d | 15d | Unskilled Labor [96 h]; JCB [48 h]; Lighting poles with 1 arm, height of (12) meters, including the power distribution box, cables, and RCC foundation.; Lighting poles with 2 arms, height of (12) meters, including the power distribution box, cables, and RCC foundation. [0.82] | 2,371.02 | SL | CO-R26.S11-SL-210 |
|  | CW | **Cabling Works** |  | 2027-03-31 | 2027-04-11 |  |  |  |  |  |  |  |
| CO-SL-CL-290 |  | Cable Laying Works for Street Lighting Network for Alignment-RD-01 | 5d | 2027-03-31 | 2027-04-05 | ENG-SH-SL-A-110, ENG-MS-SL-A-110, ENG-MT-SL-ML-A-100, PRO-SL-1DL-100, MS-CS-SL SS, MS-MM-130, MS-MM-140, CO-SL-LP-360, CO-MV-ML-300, CO-IR-ML-180, CO-PW-ML-160, CO-PW-FH-190, CO-SW-ML-160, CO-SW-MH-250, CO-SD-CB-200, CO-SD-ML-160, CO-SD-MH-260, CO-EW-210_R, PRO-R25-SL-DL-100 | -100d | 0d | Skilled Labor [40 h]; Unskilled Labor [80 h]; Electrician [40 h]; JCB [40 h]; Lighting poles with 1 arm, height of (12) meters, including the power distribution box, cables, and RCC foundation.; Lighting poles with 2 arms, height of (12) meters, including the power distribution box, cables, and RCC foundation. [9.03] | 26,081.25 | SL |  |
| CO-SL-CL-300 |  | Trench Backfilling and Compaction Works for Street Lighting Network for Alignment-RD-01 | 5d | 2027-04-06 | 2027-04-11 | CO-SL-CL-290, CO-SL-LP-380 FF | -100d | 0d | Skilled Labor [40 h]; Water Tanker [40 h]; Excavator [40 h]; Lighting poles with 1 arm, height of (12) meters, including the power distribution box, cables, and RCC foundation.; Lighting poles with 2 arms, height of (12) meters, including the power distribution box, cables, and RCC foundation. [7.39] | 21,339.2 | SL |  |

| ID | WBS | Activity | Duration | Start | Finish | Predecessors | Total float | Free float | Resources | Cost | 01- Network | Activity ID N |
| --- | --- | --- | --- | --- | --- | --- | --- | --- | --- | --- | --- | --- |
|  | DPB | **Distrubution Panel Boards** |  |  |  |  |  |  |  |  |  |  |
|  | TE | **Telecom and Light Current Network** |  | 2027-04-12 | 2027-04-29 |  |  |  |  |  |  |  |
|  | PD | **Ducts Works** |  | 2027-04-21 | 2027-04-28 |  |  |  |  |  |  |  |
| CO-TE-DW-150 |  | Pipes Laying Works for Ducts of Telecom Network for Alignment-RD-01 | 4d | 2027-04-21 | 2027-04-25 | ENG-SH-TE-A-110, ENG-MS-TE-A-110, ENG-MT-TE-A-100, PRO-TE-1DL-100, MS-CS-TE SS, MS-MM-130, MS-MM-140, CO-SD-MH-260, CO-SD-ML-160, CO-SD-CB-200, CO-SW-ML-160, CO-PW-ML-160, CO-PW-VC-250, CO-PW-FH-190, CO-IR-ML-180, CO-MV-ML-300, CON-LV-ML-150, CON-LV-HC-150, CO-SL-LP-380, CO-SL-CL-300, CO-EW-210_R, PRO-LV-DP-1DL-100, PRO-LV-DP-DL-100, CON-LV-DP-130, PRO-R25-SL-DL-160 SS, ENG-MT-SL-DB-A-100, MS-CS-SL SS, PRO-R25-TE-DL-100 | -99d | 0d | Skilled Labor [32 h]; Unskilled Labor [64 h]; Electrician [32 h]; 2-ways ducts, 32mm diameter [269.25]; 2x3-ways ducts, 50mm diameter [853.73]; 8-ways ducts, 6 x 160mm & 2 x 100mm [64.03]; 2 PVC ducts 150x200 mm (60mm diameter); 4 PVC ducts 600x150 mm (60mm diameter); 8 PVC ducts 1000x300 mm (60mm diameter); 6 PVC ducts 600x800 mm (60mm diameter) | 65,249.21 | TE |  |
| CO-TE-DW-160 |  | Trench Backfilling and Compaction Works for Ducts of Telecom Network for Alignment-RD-01 | 3d | 2027-04-26 | 2027-04-28 | CO-TE-DW-150, CO-TE-MH-190 SS | -99d | 0d | Skilled Labor [32 h]; Excavator [32 h]; 2-ways ducts, 32mm diameter [122.39]; 2x3-ways ducts, 50mm diameter [388.06]; 8-ways ducts, 6 x 160mm & 2 x 100mm [29.1]; 2 PVC ducts 150x200 mm (60mm diameter); 4 PVC ducts 600x150 mm (60mm diameter); 8 PVC ducts 1000x300 mm (60mm diameter); 6 PVC ducts 600x800 mm (60mm diameter) | 29,658.73 | TE |  |
|  | MH | **Manholes Works** |  | 2027-04-12 | 2027-04-20 |  |  |  |  |  |  |  |
| CO-TE-MH-170 |  | Excavation Works for Manholes of Telecom Network for Alignment-RD-01 | 4d | 2027-04-12 | 2027-04-15 | ENG-MT-TE-A-100, PRO-TE-1DL-100, CO-SD-MH-260, CO-SD-ML-160, CO-SD-CB-200, CO-SW-ML-160, CO-PW-ML-160, CO-PW-VC-250, CO-PW-FH-190, CO-IR-ML-180, CO-MV-ML-300, CO-SL-LP-380, CO-SL-CL-300, CO-EW-210_R, PRO-LV-DP-1DL-100, PRO-LV-DP-DL-100, PRO-R25-SL-DL-160 SS, ENG-MT-SL-DB-A-100, MS-CS-SL SS, ENG-SH-TE-A-110, ENG-MS-TE-A-110, ENG-MT-TE-A-110, PRO-TE-1DL-110, MS-CS-TE SS, MS-MM-130, MS-MM-140 | -92d | 0d | Unskilled Labor [64 h]; JCB [32 h]; Manhole Type 3 (1200 x 1200 x 2000) [0.6]; Manhole Type 1 (800 x 600 x 1200) [0.3] | 2,415.93 | TE |  |
| CO-TE-MH-180 |  | Installation Works for Manholes of Telecom Network for Alignment-RD-01 | 4d | 2027-04-12 | 2027-04-15 | CO-TE-MH-170 SS, PRO-R25-TE-DL-110 | -92d | 0d | Unskilled Labor [64 h]; Boom Truck [32 h]; Manhole Type 3 (1200 x 1200 x 2000) [6.57]; Manhole Type 1 (800 x 600 x 1200) [3.28] | 26,575.19 | TE |  |
| CO-TE-MH-190 |  | Backfilling Works for Manholes of Telecom Network for Alignment-RD-01 | 4d | 2027-04-17 | 2027-04-20 | CO-TE-MH-180 | -92d | 0d | Unskilled Labor [64 h]; Boom Truck [32 h]; Manhole Type 3 (1200 x 1200 x 2000) [1.79]; Manhole Type 1 (800 x 600 x 1200) [0.9] | 7,247.78 | TE |  |
|  | DD | **CCTV, Telephone, MSN, ACs System Works** |  | 2027-04-21 | 2027-04-29 |  |  |  |  |  |  |  |
| CO-TE-CTV-150 |  | Installation of CCTV, Telephone, ACS and MSN Systems Cables for Alignment-RD-01 | 8d | 2027-04-21 | 2027-04-29 | CO-TE-MH-190, ENG-SH-MSN-A-120, ENG-SH-CTV-A-110, ENG-MS-CTV-A-110, ENG-MT-CTV-A-100, PRO-CTV-1DL-100, MS-CS-TE SS, MS-MM-130, MS-MM-140, PRO-R25-CTV-DL-100 | -81d | 3d | Skilled Labor [128 h]; Unskilled Labor [256 h]; Electrician [128 h]; NVR Server with RAID (5, 6 or 10) to record all cameras storage 80TB with all hardware / software / licenses etc. [1.31]; VMS Server with RAID (5, 6 or 10) complete Hardware / Software with one Color Laser Printer and all associated accessories for central management. [1.31]; Licenses for Cameras, Workstations and Keyboards [0.66]; Work Station (MMI with two monitors each, for Monitoring for CCTV & ACS) [0.66]; Keyboard with joystick for CCTV with all accessories as per specification [0.66]; Pole mounted IP( PoE) Fixed camera, 5MP,IP 66, IR illumination, 3-8mm varifocal, auto iris lens type [26.27]; Wall mounted IP( PoE) Fixed camera, 5MP,IP 66, IR illumination, 3-8mm varifocal, auto iris lens type [32.18]; 5MP Dome camera ceiling Mounted IP (PoE) indoor [11.16]; 5MP PTZ Multi Sensor Camera IP(PoE) 360 Degree View Outdoor with accessories (IP 66) [4.6]; 8 Port Industrial PoE Switch 10/100BaseT (0 deg to +70 deg. Celsius) [7.22]; Filed Equipment cabinet (FEC), with fan and ventilation, NEMEX 4X ,door, minimum size (600x600x400mm), the cabinet/enclosure includes industrial switch and UPS. [7.22]; IP Phone Communication server (hot standby) 50 Port equipped, Gateway, Gatekeeper, H.323, SIP, redundant Power etc. [1.97]; IP Phone Voice gateway [0.66]; Voice IP Phone [0.66]; NMS Server for IP phone and NETWORK Elements [0.66]; NMS Workstation [0.66]; Firm Ware, software & licenses [0.66]; Data Cable [0.66]; Power Cable [0.66]; Layer 3, 24 Port non-PoE switch10/1000BaseT/LX (-40 deg to +70 deg. Celsius), stack module and associated accessories for utility Telecom Server room [1.31]; Layer 2, 24 Port non-PoE switch10/1000BaseT (-40 deg to +70 deg. Celsius), stack module and associated accessories for utility Telecom Server and Security Guard house room [3.94]; Network Management System Server [1.31]; Network Management System workstation [0.66]; 42U rack dimension (W x H x L) 800 x 2000 x 1000 mm [1.31]; 12U rack dimension (W x H x L) 600 x 625 x 600 mm [0.66]; 06C Optical Fiber SM [1195.22]; 48C Optical Fiber SM [3808.96]; 48 Core Splice Closure [4.6]; Optical fiber patch cord 5m [15.76]; Data Cable (STP CAT 6A) [6777.31]; 3C Power Cable armored 1.5mm2 [6777.31]; 3C Power Cable armored 2.5 mm2 [6777.31]; UTP CAT6A Patch Cord 1m/3m/5m [15.1]; Access Control Unit [3.28]; Access Card Reader [3.28]; Magnetic Lock [3.28]; Break Glass [2.63]; Exit Push button [3.28]; Door Sensor [3.28]; Biometrics Reader [5.25]; Smart Card Printer [0.66]; Card Issue Work Station [0.66]; Photographic Camera with stand [0.66]; Interface modules with CCTV, Fire and other systems [0.66]; 1-ways ducts, 6 x 50mm diameter [334.93]; 6 PVC ducts 150x200 mm (60mm diameter) [75.52] | 1,386,196.09 | CTV |  |
|  | RD | **Road Network** |  | 2027-04-29 | 2027-05-25 |  |  |  |  |  |  |  |
|  | 1 | **Roads Works** |  |  |  |  |  |  |  |  |  |  |
|  | LS | **Pavement Works** |  | 2027-04-29 | 2027-05-10 |  |  |  |  |  |  |  |
| CO-RD-PV-180 |  | Fixing of Curbstone for Sidewalks Pavement for Alignment-RD-01 | 10d | 2027-04-29 | 2027-05-10 | PRO-R25-RD-DL-170, PRO-RD-1DL-130, PRO-R25-RD-DL-100, PRO-RD-1DL-100, MS-MM-140, MS-MM-130, MS-CS-RD SS, ENG-SH-RD-A-100, ENG-SH-RD-A-110, ENG-MS-RD-A-30, ENG-MS-RD-A-20, ENG-MS-RD-A-10, ENG-MS-RD-A-40, CO-TE-MH-190, CO-TE-DW-160, CO-SL-CL-300, CO-SL-LP-380, CON-LV-HC-150, CON-LV-ML-150, CO-MV-ML-300, CO-IR-ML-180, CO-PW-FH-190, CO-PW-VC-250, CO-PW-ML-160, CO-TSE-ML-230, CO-SW-ML-160, CO-SW-MH-250, CO-SD-CB-200, CO-SD-ML-160, CO-SD-MH-260, CO-EW-210_R, CO-SL-LP-520, ENG-MS-HS-A-10, PRO-R25-RD-DL-130, PRO-RD-1DL-150 | -95d | 0d | Pavement Labor [960 h]; Bobcat [240 h]; JCB [240 h]; Precast Concrete Curbstone 150X300X900 Type (K1-A) [5513.3]; Precast Concrete Curbstone 100X200X500 Type (K4) [2163.69]; Precast Concrete Curbstone 150X300X500 Type (K1-B) [477.34]; Precast Concrete Curbstone Type (K1-C) [33.42]; Flush Kerb Type (D) [60.46] | 263,715.04 | RD |  |
| CO-RD-PV-190 |  | Fixing of Interlock Tiles for Sidewalks Pavement for Alignment-RD-01 | 10d | 2027-04-29 | 2027-05-10 | CO-RD-PV-180 SS, ENG-MS-HS-A-10, PRO-R25-RD-DL-120, PRO-RD-1DL-140 | -87d | 3d | Pavement Labor [4112 h]; Bobcat [2352 h]; JCB [2352 h]; 60mm thick [13409.4]; 80mm thick [30107.4] | 2,343,547.83 | RD |  |
|  | TS | **Traffic Signs Boards and Roads Marking** |  | 2027-05-03 | 2027-05-25 |  |  |  |  |  |  |  |
| CO-RD-F-RM-190 |  | Application of Road Marking Works For Road Works for Alignment-RD-01 | 4d | 2027-05-03 | 2027-05-06 | PRO-R25-RD-DL-170, PRO-RD-1DL-130, PRO-R25-RD-DL-100, PRO-RD-1DL-100, MS-MM-140, MS-MM-130, MS-CS-RD SS, ENG-SH-RD-A-100, ENG-SH-RD-A-110, ENG-MS-RD-A-30, ENG-MS-RD-A-20, ENG-MS-RD-A-10, ENG-MS-RD-A-40, CO-TE-MH-190, CO-TE-DW-160, CO-SL-CL-300, CO-SL-LP-380, CON-LV-HC-150, CON-LV-ML-150, CO-MV-ML-300, CO-IR-ML-180, CO-PW-FH-190, CO-PW-VC-250, CO-PW-ML-160, CO-TSE-ML-230, CO-SW-ML-160, CO-SW-MH-250, CO-SD-CB-200, CO-SD-ML-160, CO-SD-MH-260, CO-EW-210_R, CO-SL-LP-520, CO-RD-PV-190 SS, ENG-MS-MRK-A-10, PRO-R25-RD-DL-150, ENG-SH-MRK-A-110, PRO-RD-1DL-170, CO-RD-PV-180 SS | -78d | 7d | Skilled Labor [48 h]; Road Painter [48 h]; Retroreflective Thermoplastic White Traffic lines [485.3]; Retroreflective Thermoplastic Yellow, Traffic lines [730.87]; Precast Concrete Blister Warning Tactile Paver Brown Finish 300*300*60mm [12.6] | 35,712.98 | RD |  |
| CO-RD-F-TS-130 |  | Installation Works of Traffic Signs Boards For Road Works for Alignment-RD-01 | 4d | 2027-05-22 | 2027-05-25 | PRO-R25-RD-DL-170, PRO-RD-1DL-130, PRO-R25-RD-DL-100, PRO-RD-1DL-100, MS-MM-140, MS-MM-130, MS-CS-RD SS, ENG-SH-RD-A-100, ENG-SH-RD-A-110, ENG-MS-RD-A-30, ENG-MS-RD-A-20, ENG-MS-RD-A-10, ENG-MS-RD-A-40, CO-TE-MH-190, CO-TE-DW-160, CO-SL-CL-300, CO-SL-LP-380, CON-LV-HC-150, CON-LV-ML-150, CO-MV-ML-300, CO-IR-ML-180, CO-PW-FH-190, CO-PW-VC-250, CO-PW-ML-160, CO-TSE-ML-230, CO-SW-ML-160, CO-SW-MH-250, CO-SD-CB-200, CO-SD-ML-160, CO-SD-MH-260, CO-EW-210_R, CO-SL-LP-520, CO-RD-F-RM-190, ENG-MS-TSB-A-10, PRO-R25-RD-DL-140, ENG-SH-TSB-A-100, PRO-RD-1DL-160 | -85d | 2d | Unskilled Labor [96 h]; Traffic signs, ground mounted, Sheet Aluminum, (breakaway) Single post IPE, with all accessories [31.34] | 19,881.75 | RD |  |
|  | 3 | **Finishes for Infrastructure Networks** |  | 2027-03-08 | 2027-06-14 |  |  |  |  |  |  |  |
|  | 11 | **Storm Drainage Network** |  | 2027-04-29 | 2027-06-14 |  |  |  |  |  |  |  |
|  | TF | **Testing and Finishes** |  | 2027-04-29 | 2027-06-14 |  |  |  |  |  |  |  |
| CO-SD-CB-TF-190 |  | Catch Basin Internal Finishes (Benching ) for Storm Drainage Network for Alignment-RD-01 | 6d | 2027-04-29 | 2027-05-05 | CO-SD-MH-260, PRO-SD-1DL-140, PRO-R25-SD-DL-140, PRO-R25-RD-DL-170, PRO-RD-1DL-130, PRO-R25-RD-DL-100, PRO-RD-1DL-100, MS-MM-140, MS-MM-130, MS-CS-RD SS, ENG-SH-RD-A-100, ENG-SH-RD-A-110, ENG-MS-RD-A-30, ENG-MS-RD-A-20, ENG-MS-RD-A-10, ENG-MS-RD-A-40, CO-TE-MH-190, CO-TE-DW-160, CO-SL-CL-300, CO-SL-LP-380, CON-LV-HC-150, CON-LV-ML-150, CO-MV-ML-300, CO-IR-ML-180, CO-PW-FH-190, CO-PW-VC-250, CO-PW-ML-160, CO-TSE-ML-230, CO-SW-ML-160, CO-SW-MH-250, CO-SD-ML-160, CO-EW-210_R, CO-SL-LP-520, CO-SD-CB-200 | -99d | 12d | Skilled Labor [144 h]; Unskilled Labor [288 h]; Single Catch Basin 1000mm x 1000mm [19.93]; Double Catch Basin 1200mm x 2300mm [0.67] | 107,219.25 | SD |  |
| CO-SD-ML-TF-110 |  | Testing Work for Pipes of Storm Drainage Network for Alignment-RD-01 | 2d | 2027-05-26 | 2027-05-27 | CO-SD-MH-260, PRO-SD-1DL-140, PRO-R25-SD-DL-140, PRO-R25-RD-DL-170, PRO-RD-1DL-130, PRO-R25-RD-DL-100, PRO-RD-1DL-100, MS-MM-140, MS-MM-130, MS-CS-RD SS, ENG-SH-RD-A-100, ENG-SH-RD-A-110, ENG-MS-RD-A-30, ENG-MS-RD-A-20, ENG-MS-RD-A-10, ENG-MS-RD-A-40, CO-TE-MH-190, CO-TE-DW-160, CO-SL-CL-300, CO-SL-LP-380, CON-LV-HC-150, CON-LV-ML-150, CO-MV-ML-300, CO-IR-ML-180, CO-PW-FH-190, CO-PW-VC-250, CO-PW-ML-160, CO-TSE-ML-230, CO-SW-ML-160, CO-SW-MH-250, CO-SD-CB-200, CO-EW-210_R, CO-SL-LP-520, CO-SD-ML-160, CO-SD-PO-110-P1, CO-SD-PO-110-P2, CO-SD-CB-TF-190 | -111d | 0d | Skilled Labor [24 h]; Plumber [24 h]; Depth Between 0m to 1.50m [299.1]; Depth Between 1.50m to 2.50m [137.99]; Depth Between 2.50m to 3.50m [8.36]; Depth > 3.50m [4.48]; Depth Between 0m to 1.50m; Depth Between 1.50m to 2.50m [19.6]; Depth Between 2.50m to 3.50m; Depth > 3.50m; Depth Between 0m to 1.50m [12.24]; Depth Between 1.50m to 2.50m [36.39]; Depth Between 2.50m to 3.50m [17.91]; Depth Between 3.50m to 4.50m [62.99]; Depth > 4.50m [4.78]; Depth Between 1.50m to 2.50m; Depth Between 3.50m to 4.50m; Depth > 4.50m; Depth Between 2.50m to 3.50m [18.81]; Depth Between 0m to 1.50m [4.48]; Depth Between 1.50m to 2.50m [19.4]; Depth Between 2.50m to 3.50m [20]; GRP Pipe, 900mm diameter with Depth Between 3.51m to 4.50m [1.79] | 380,890.17 | SD |  |
| CO-SD-MH-TF-230 |  | Testing Works for Manholes of Storm Drainage Network for Alignment-RD-01 | 2d | 2027-05-29 | 2027-05-30 | PRO-SD-1DL-140, PRO-R25-SD-DL-140, PRO-R25-RD-DL-170, PRO-RD-1DL-130, PRO-R25-RD-DL-100, PRO-RD-1DL-100, MS-MM-140, MS-MM-130, MS-CS-RD SS, ENG-SH-RD-A-100, ENG-SH-RD-A-110, ENG-MS-RD-A-30, ENG-MS-RD-A-20, ENG-MS-RD-A-10, ENG-MS-RD-A-40, CO-TE-MH-190, CO-TE-DW-160, CO-SL-CL-300, CO-SL-LP-380, CON-LV-HC-150, CON-LV-ML-150, CO-MV-ML-300, CO-IR-ML-180, CO-PW-FH-190, CO-PW-VC-250, CO-PW-ML-160, CO-TSE-ML-230, CO-SW-ML-160, CO-SW-MH-250, CO-SD-CB-200, CO-SD-ML-160, CO-EW-210_R, CO-SL-LP-520, CO-SD-MH-260, CO-SD-ML-TF-110 | -111d | 0d | Skilled Labor [16 h]; Plumber [16 h]; MH depth 1.5 - 2.5m [3.36]; MH depth 2.5 - 3.5m [2.61]; MH depth 3.5 - 4.5m [1.87]; MH depth > 4.50m; MH depth 2.5 -3.5m [1.87]; MH depth > 3.50m [0.37] | 113,515.12 | SD | CO-R26.S11-SD-210 |
| CO-SD-CB-TF-170 |  | Testing Works for Catch Basins of Storm Drainage Network for Alignment-RD-01 | 7d | 2027-05-31 | 2027-06-07 | CO-SD-CB-200, CO-SD-CB-TF-190, CO-SD-MH-TF-230 | -111d | 0d | Skilled Labor [56 h]; Plumber [56 h]; Single Catch Basin 1000mm x 1000mm [13.28]; Double Catch Basin 1200mm x 2300mm [0.45] | 71,479.5 | SD |  |
| CO-SD-CB-TF-180 |  | Install Catch Basin Cover Works for External Finishes of Storm Drainage Network for Alignment-RD-01 | 6d | 2027-06-08 | 2027-06-14 | PRO-R25-RD-DL-170, PRO-RD-1DL-130, PRO-R25-RD-DL-100, PRO-RD-1DL-100, MS-MM-140, MS-MM-130, MS-CS-RD SS, ENG-SH-RD-A-100, ENG-SH-RD-A-110, ENG-MS-RD-A-30, ENG-MS-RD-A-20, ENG-MS-RD-A-10, ENG-MS-RD-A-40, CO-TE-MH-190, CO-TE-DW-160, CO-SL-CL-300, CO-SL-LP-380, CON-LV-HC-150, CON-LV-ML-150, CO-MV-ML-300, CO-IR-ML-180, CO-PW-FH-190, CO-PW-VC-250, CO-PW-ML-160, CO-TSE-ML-230, CO-SW-ML-160, CO-SW-MH-250, CO-SD-ML-160, CO-SD-MH-260, CO-EW-210_R, CO-SL-LP-520, CO-SD-CB-TF-190, PRO-SD-1DL-150, PRO-R25-SD-DL-150, CO-SD-CB-200, CO-SD-CB-TF-170 | -98d | 18d | Skilled Labor [128 h]; Unskilled Labor [256 h]; Single Catch Basin 1000mm x 1000mm [19.93]; Double Catch Basin 1200mm x 2300mm [0.67] | 107,219.25 | SD |  |

| ID | WBS | Activity | Duration | Start | Finish | Predecessors | Total float | Free float | Resources | Cost | Activity ID N | 01- Network |
| --- | --- | --- | --- | --- | --- | --- | --- | --- | --- | --- | --- | --- |
|  | 10 | **Sewage Network** |  | 2027-04-29 | 2027-05-06 |  |  |  |  |  |  |  |
|  | TF | **Testing and Finishes** |  | 2027-04-29 | 2027-05-06 |  |  |  |  |  |  |  |
| CO-SW-TF-250 |  | Testing Works for Main Line Manholes of Sewage Network for Alignment-RD-01 | 3d | 2027-04-29 | 2027-05-02 | CO-SD-MH-260, PRO-SD-1DL-140, PRO-R25-SD-DL-140, PRO-R25-RD-DL-170, PRO-RD-1DL-130, PRO-R25-RD-DL-100, PRO-RD-1DL-100, MS-MM-140, MS-MM-130, MS-CS-RD SS, ENG-SH-RD-A-100, ENG-SH-RD-A-110, ENG-MS-RD-A-30, ENG-MS-RD-A-20, ENG-MS-RD-A-10, ENG-MS-RD-A-40, CO-TE-MH-190, CO-TE-DW-160, CO-SL-CL-300, CO-SL-LP-380, CON-LV-HC-150, CON-LV-ML-150, CO-MV-ML-300, CO-IR-ML-180, CO-PW-FH-190, CO-PW-VC-250, CO-PW-ML-160, CO-SD-CB-200, CO-SD-ML-160, CO-EW-210_R, CO-SL-LP-520, CO-SW-MH-250, CO-SW-ML-160, CO-TSE-ML-230 | -80d | 0d | Skilled Labor [24 h]; Plumber [24 h]; Depth: 0 - 1.5m [2.24]; Depth: 1.51 - 2.5m [5.22]; Depth: 2.51 - 3.5m [2.61]; Depth: 3.51 - 4.5m [1.12]; Depth: 4.51 - 5.5m [0.37]; Depth > 5.50m [1.12] | 88,071.01 | CO-R26.S11-SW-210 | SW |
| CO-SW-TF-230 |  | Final Testing For Main Line of Sewage Network for Alignment-RD-01 | 4d | 2027-05-03 | 2027-05-06 | CO-SW-ML-160, CO-SW-MH-250, CO-TSE-ML-230, CO-SW-TF-250 | -80d | 31d | Skilled Labor [32 h]; Plumber [32 h]; Depth Between 0m to 1.50m [34.93]; Depth Between 1.50m to 2.50m [59.18]; Depth > 2.50m [1.94]; Depth Between 0m to 1.50m [12.61]; Depth Between 1.50m to 2.50m [116.42]; Depth Between 2.50m to 3.50m [149.4]; Depth Between 3.50m to 4.50m [5.97]; Depth Between 4.50m to 5.50m [4.48]; Depth > 5.50m [2.99]; HDPE Force Main (PE 100, SDR 11, PN 16 bar) DN 160 mm diameter, in trenches depth: 0- 1.5m [67.46]; HDPE Force Main (PE 100, SDR 11, PN 16 bar) DN 160 mm diameter, in trenches depth: 1.51- 2.5m [122.39]; Air valves with dia 50 mm [0.3]; Gate valves Dia 50 mm [0.3]; Air valve chamber (1000x 1000 mm) [0.3] | 134,229.93 |  | SW |
|  | 9 | **Potable Water Network** |  | 2027-04-29 | 2027-05-08 |  |  |  |  |  |  |  |
|  | TF | **Testing and Finishes** |  | 2027-04-29 | 2027-05-08 |  |  |  |  |  |  |  |
| CO-PW-TF-140 |  | Fire Hydrant Finishies (S.Box + Safety + Marker Post ) of Potable Water Network for Alignment-RD-01 | 4d | 2027-04-29 | 2027-05-03 | PRO-R25-RD-DL-170, PRO-RD-1DL-130, PRO-R25-RD-DL-100, PRO-RD-1DL-100, MS-MM-140, MS-MM-130, MS-CS-RD SS, ENG-SH-RD-A-100, ENG-SH-RD-A-110, ENG-MS-RD-A-30, ENG-MS-RD-A-20, ENG-MS-RD-A-10, ENG-MS-RD-A-40, CO-TE-MH-190, CO-TE-DW-160, CO-SL-CL-300, CO-SL-LP-380, CON-LV-HC-150, CON-LV-ML-150, CO-MV-ML-300, CO-IR-ML-180, CO-PW-VC-250, CO-PW-ML-160, CO-TSE-ML-230, CO-SW-ML-160, CO-SW-MH-250, CO-SD-CB-200, CO-SD-ML-160, CO-SD-MH-260, CO-EW-210_R, CO-SL-LP-520, CO-PW-FH-190, ENG-MT-PW-TF-A-100 | -83d | 0d | Skilled Labor [48 h]; Unskilled Labor [96 h]; Plumber [96 h]; 3-outlet fire hydrant (2 x 2.5 inch and 1 x 4.5 inch) in the form of a separate dry vacuum cylinder, complete according to drawings. [2.09] | 15,739.7 |  | PW |
| CO-PW-TF-150 |  | Final Finishes works and Covers for Valves and Valve Chambers for Alignment-RD-01 | 2d | 2027-05-04 | 2027-05-05 | CO-PW-VC-250, ENG-MT-PW-TF-A-100, PRO-PW-1DL-130, PRO-R25-PW-DL-130, CO-PW-TF-140 | -83d | 0d | Unskilled Labor [48 h]; Plumber [48 h]; Depth Between 0m to 1.50m; Depth Between 1.50m to 2.50m; Depth > 2.50m; Depth Between 0m to 1.50m [91.42]; Depth Between 1.50m to 2.50m [133.21]; Depth > 2.50m [3.36]; Depth Between 0m to 1.50m [110.75]; Depth Between 1.50m to 2.50m [368.28]; Depth > 2.50m [6.72]; Gate valves Dia 50 mm; Gate valves Dia 100 mm [4.48]; Gate valves Dia 150 mm; Gate valves Dia 250 mm [1.49]; Air valves with Dia 50 mm [0.3]; Washout valve Dia 100 mm; Wash out chamber (2500x 2500mm); Air valve chamber (1000x 1000 mm) [0.3]; Flow meter chamber (1500x 2500 mm); Flow meter dia 100 mm | 128,135.84 |  | PW |
| CO-PW-TF-220 |  | Testing of Potable Water Network for Alignment-RD-01 | 2d | 2027-05-06 | 2027-05-08 | CO-PW-ML-160, CO-PW-TF-150 | -83d | 0d | Unskilled Labor [16 h]; Plumber [16 h]; Depth Between 0m to 1.50m; Depth Between 1.50m to 2.50m; Depth > 2.50m; Depth Between 0m to 1.50m [73.13]; Depth Between 1.50m to 2.50m [106.57]; Depth > 2.50m [2.99]; Depth Between 0m to 1.50m [88.6]; Depth Between 1.50m to 2.50m [294.63]; Depth > 2.50m [5.97] | 90,167.36 |  | PW |
|  | 13 | **Irrigation Network** |  | 2027-05-09 | 2027-05-10 |  |  |  |  |  |  |  |
|  | TF | **Testing and Finishes** |  | 2027-05-09 | 2027-05-10 |  |  |  |  |  |  |  |
| CO-IR-TF-170 |  | Final Testing (pressure tests) of Irrigation Network for Alignment-RD-01 | 2d | 2027-05-09 | 2027-05-10 | CO-IR-ML-190, CO-PW-TF-220 | -83d | 1d | Skilled Labor [32 h]; Plumber [32 h]; pipe line O.D 32 mm PN 10, in depth 0 to 1.5 m [492.54]; pipe line O.D 40 mm PN 10, in depth 0 to 1.5 m [447.76]; pipe line O.D 50 mm PN 10, in depth 0 to 1.5 m [134.33] | 27,687 |  | IR |
|  | 1 | **Treated Sewage Effluent (Tse)** |  | 2027-05-09 | 2027-05-10 |  |  |  |  |  |  |  |
|  | TF | **Testing and Finishes** |  | 2027-05-09 | 2027-05-10 |  |  |  |  |  |  |  |
| CO-TSE-TF-210 |  | Final Testing (pressure tests) of Treated Sewage Effluent (Tse) for Alignment-RD-01 | 2d | 2027-05-09 | 2027-05-10 | CO-TSE-ML-230, CO-PW-TF-220 | -73d | 16d | Skilled Labor [16 h]; Plumber [16 h]; Depth Between 0m to 1.50m; Depth Between 1.50m to 2.50m; Depth > 2.50m; Depth Between 0m to 1.50m [22.72]; Depth Between 1.50m to 2.50m [76.57]; Depth Between 0m to 1.50m [13.49]; Depth Between 1.50m to 2.50m [98.81]; Depth > 2.50m [2.39] | 23,699.21 |  | TSE |
|  | 14 | **Medium Voltage Network** |  | 2027-03-08 | 2027-03-13 |  |  |  |  |  |  |  |
|  | TT | **Termination and Testing Works** |  | 2027-03-08 | 2027-03-13 |  |  |  |  |  |  |  |
| CO-MV-TF-230 |  | Testing and Termination Works of Medium Voltage Network for Alignment-RD-01 | 2d | 2027-03-08 | 2027-03-13 | CO-MV-ML-300 | -50d | 2d | Skilled Labor [16 h]; Electrician [16 h]; Duct bank for (33) cables [11.94]; Duct bank for (21) cables [7.16]; Duct bank for (15) cables; HV Cable Road Crossing [17.24] | 30,970.67 |  | MV |
|  | 6 | **Low Voltage Network** |  | 2027-04-21 | 2027-04-25 |  |  |  |  |  |  |  |
|  | TT | **Termination and Testing Works** |  | 2027-04-21 | 2027-04-25 |  |  |  |  |  |  |  |
| CON-LV-TT-120 |  | Testing and Termination Works for Substation Low Voltage Panel Boards of Low Voltage Network for Alignment-RD-01 | 4d | 2027-04-21 | 2027-04-25 | CO-MV-TF-230, PRO-LV-DP-1DL-100, PRO-LV-DP-DL-100, CON-LV-DP-130, PRO-LV-TT-1DL-100, PRO-LV-TT-DL-100, CON-LV-HC-150, CON-LV-ML-150 | -67d | 7d | Skilled Labor [32 h]; Electrician [32 h]; 4C-300mm2 CU/XLPE / PVC ARMORED CABLE [7.31]; 4C-240mm2 CU/XLPE / PVC ARMORED CABLE [4.18]; 4C-185mm2 CU/XLPE / PVC ARMORED CABLE [4.18]; 4C-50mm2 CU/XLPE / PVC ARMORED CABLE [15.67]; 4C-16mm2 CU/XLPE / PVC ARMORED CABLE [360.97]; 4C-16MM2 CU/XLPE / PVC CABLE [145.75]; 1Cx150sq.mm2,Cu, PVC wire [7.31]; 1Cx120sq.mm2,Cu, PVC wire [9.4]; 1Cx95sq.mm,Cu, PVC wire [4.18]; 1Cx70sq.mm2,Cu, PVC wire [2.09]; 1Cx25sq.mm2,Cu, PVC wire [9.4]; 1Cx16sq.mm2,Cu, PVC wire [360.97]; 1Cx10sq.mm2,Cu, PVC wire [3.13] | 32,877.44 |  | LV |
|  | 1 | **Earthing System Works** |  |  |  |  |  |  |  |  |  |  |
|  | 12 | **Street Lighting Network** |  | 2027-04-12 | 2027-05-12 |  |  |  |  |  |  |  |
|  | TR | **Termination and Testing Works** |  | 2027-04-12 | 2027-05-12 |  |  |  |  |  |  |  |
| CO-SL-LP-370 |  | Installation Works for Lighting Fixtures With Drop Wire of Street Lighting Network for Alignment-RD-01 | 6d | 2027-04-12 | 2027-04-18 | PRO-R25-SL-DL-160 SS, CO-SL-CL-300, ENG-MT-SL-DB-A-100, MS-CS-SL SS, CO-EW-210_R, MS-MM-130, MS-MM-140, CO-SL-LP-380, ENG-MT-SL-A-120, PRO-R25-SL-DL-140, CO-SL-LP-570 | -100d | 0d | Unskilled Labor [48 h]; Electrician [48 h]; Man Left [48 h]; Street Lighting( LED) Luminaire of Output ? 20,965 lumen complete with control gear and lamp, (129.1) WATT. [32.84] | 12,891.78 |  | SL |
| CO-SL-TF-410 |  | Testing Works for Lighting Poles of Street Lighting Network for Alignment-RD-01 | 3d | 2027-05-10 | 2027-05-12 | PRO-R25-SL-DL-160 SS, CO-SL-LP-380, CO-SL-CL-300, ENG-MT-SL-DB-A-100, MS-CS-SL SS, CO-EW-210_R, MS-MM-130, MS-MM-140, CO-SL-LP-370, CO-SL-ES-250, PRO-R25-SL-DL-130 | -81d | 4d | Unskilled Labor [24 h]; Electrician [24 h]; Lighting poles with 1 arm, height of (12) meters, including the power distribution box, cables, and RCC foundation.; Lighting poles with 2 arms, height of (12) meters, including the power distribution box, cables, and RCC foundation. [4.93] | 14,226.14 | CO-R26.S11-SL-200 | SL |

| ID | WBS | Activity | Duration | Start | Finish | Predecessors | Total float | Free float | Resources | Cost | 01- Network | Activity ID N |
| --- | --- | --- | --- | --- | --- | --- | --- | --- | --- | --- | --- | --- |
|  | ES | **Earthing System Works** |  | 2027-05-04 | 2027-05-09 |  |  |  |  |  |  |  |
| CO-SL-ES-240 |  | Install Earthing System Works for Lighting Poles of Street Lighting Network for Alignment-RD-01 | 3d | 2027-05-04 | 2027-05-06 | CO-SL-LP-370, ENG-MT-SL-ES-A-100, PRO-R25-SL-DL-150 | -87d | 0d | Unskilled Labor [48 h]; Electrician [24 h]; JCB [24 h]; Including earthing of lighting poles, masts, feeder pillars, unit substations and LV feeders. [16.42] | 1,889.69 | SL |  |
| CO-SL-ES-250 |  | Install Earthing System Works for Lighting Panel Boards of Street Lighting Network for Alignment-RD-01 | 2d | 2027-05-08 | 2027-05-09 | CO-SL-ES-240, PRO-R25-SL-DL-150 | -86d | 0d | Unskilled Labor [32 h]; Electrician [16 h]; JCB [16 h]; Including earthing of lighting poles, masts, feeder pillars, unit substations and LV feeders. [16.42] | 1,889.69 | SL |  |
|  | 3 | **Telecom and Light Current Network** |  | 2027-04-29 | 2027-05-05 |  |  |  |  |  |  |  |
|  | 1 | **Testing and Finishes** |  | 2027-04-29 | 2027-05-05 |  |  |  |  |  |  |  |
| CO-TE-CTV-TF-180 |  | Testing and Interface modules with Telecom for Alignment-RD-01 | 3d | 2027-04-29 | 2027-05-02 | CO-TE-CTV-150 SS, CO-TE-MH-190, CO-TE-DW-160 | -83d | 0d | Skilled Labor [24 h]; Electrician [24 h]; 2-ways ducts, 32mm diameter [97.91]; 2x3-ways ducts, 50mm diameter [310.45]; 8-ways ducts, 6 x 160mm & 2 x 100mm [23.28]; 2 PVC ducts 150x200 mm (60mm diameter); 4 PVC ducts 600x150 mm (60mm diameter); 8 PVC ducts 1000x300 mm (60mm diameter); 6 PVC ducts 600x800 mm (60mm diameter); Manhole Type 3 (1200 x 1200 x 2000) [2.99]; Manhole Type 1 (800 x 600 x 1200) [1.49] | 35,806.61 | CTV |  |
| CO-TE-CTV-TF-310 |  | Testing and Interface modules with CCTV, Telephone, MSN and Access Control for Alignment-RD-01 | 3d | 2027-05-03 | 2027-05-05 | CO-TE-CTV-150 SS, CO-TE-CTV-TF-180 | -83d | 1d | Skilled Labor [96 h]; Electrician [96 h]; NVR Server with RAID (5, 6 or 10) to record all cameras storage 80TB with all hardware / software / licenses etc. [0.33]; VMS Server with RAID (5, 6 or 10) complete Hardware / Software with one Color Laser Printer and all associated accessories for central management. [0.33]; Licenses for Cameras, Workstations and Keyboards [0.16]; Work Station (MMI with two monitors each, for Monitoring for CCTV & ACS) [0.16]; Keyboard with joystick for CCTV with all accessories as per specification [0.16]; Pole mounted IP( PoE) Fixed camera, 5MP,IP 66, IR illumination, 3-8mm varifocal, auto iris lens type [6.57]; Wall mounted IP( PoE) Fixed camera, 5MP,IP 66, IR illumination, 3-8mm varifocal, auto iris lens type [8.04]; 5MP Dome camera ceiling Mounted IP (PoE) indoor [2.79]; 5MP PTZ Multi Sensor Camera IP(PoE) 360 Degree View Outdoor with accessories (IP 66) [1.15]; 8 Port Industrial PoE Switch 10/100BaseT (0 deg to +70 deg. Celsius) [1.81]; Filed Equipment cabinet (FEC), with fan and ventilation, NEMEX 4X ,door, minimum size (600x600x400mm), the cabinet/enclosure includes industrial switch and UPS. [1.81]; IP Phone Communication server (hot standby) 50 Port equipped, Gateway, Gatekeeper, H.323, SIP, redundant Power etc. [0.49]; IP Phone Voice gateway [0.16]; Voice IP Phone [0.16]; NMS Server for IP phone and NETWORK Elements [0.16]; NMS Workstation [0.16]; Firm Ware, software & licenses [0.16]; Data Cable [0.16]; Power Cable [0.16]; Layer 3, 24 Port non-PoE switch10/1000BaseT/LX (-40 deg to +70 deg. Celsius), stack module and associated accessories for utility Telecom Server room [0.33]; Layer 2, 24 Port non-PoE switch10/1000BaseT (-40 deg to +70 deg. Celsius), stack module and associated accessories for utility Telecom Server and Security Guard house room [0.99]; Network Management System Server [0.33]; Network Management System workstation [0.16]; 42U rack dimension (W x H x L) 800 x 2000 x 1000 mm [0.33]; 12U rack dimension (W x H x L) 600 x 625 x 600 mm [0.16]; 06C Optical Fiber SM [298.81]; 48C Optical Fiber SM [952.24]; 48 Core Splice Closure [1.15]; Optical fiber patch cord 5m [3.94]; Data Cable (STP CAT 6A) [1694.33]; 3C Power Cable armored 1.5mm2 [1694.33]; 3C Power Cable armored 2.5 mm2 [1694.33]; UTP CAT6A Patch Cord 1m/3m/5m [3.78]; Access Control Unit [0.82]; Access Card Reader [0.82]; Magnetic Lock [0.82]; Break Glass [0.66]; Exit Push button [0.82]; Door Sensor [0.82]; Biometrics Reader [1.31]; Smart Card Printer [0.16]; Card Issue Work Station [0.16]; Photographic Camera with stand [0.16]; Interface modules with CCTV, Fire and other systems [0.16]; 1-ways ducts, 6 x 50mm diameter [83.73]; 6 PVC ducts 150x200 mm (60mm diameter) [18.88] | 346,549.02 | CTV |  |
|  | 5 | **Alignment-RD-02** |  | 2026-12-06 | 2027-07-05 |  |  |  |  |  |  |  |
|  | EW | **Earthworks** |  | 2026-12-06 | 2026-12-19 |  |  |  |  |  |  |  |
|  | EW | **Earthworks** |  | 2026-12-06 | 2026-12-19 |  |  |  |  |  |  |  |
| CO-EW-220 |  | Excavation and Backfilling Works Upto Design Level for Earthworks for Alignment-RD-02 | 12d | 2026-12-06 | 2026-12-19 | MS-CS-PS SS, MOB-30, MOB-20, MOB-80, MOB-40, MOB-50, MOB-60, MOB-10, MOB-70, PRE-CON-MDC-10, PRE-CON-MDC-20, PRE-CON-MDC-30, PRE-CON-MDC-40, PRE-CON-MDC-50, PRE-CON-MDC-60, PRE-CON-MDC-70, PRE-CON-MDC-80, MS-MM-100, MS-MM-130, MS-MM-140, MS-MM-150, CO-EW-230 | -115d | 0d | Skilled Labor [768 h]; Unskilled Labor [768 h]; Dozer [768 h]; Water Tanker [768 h]; Excavations (including Roads , Plots and Pond) [4135]; Embankments to the Site and Roads (including Roads , Plots and Pond) [70350] | 2,314,448.9 | FE |  |
|  | SD | **Storm Drainage Network** |  | 2026-12-20 | 2027-04-10 |  |  |  |  |  |  |  |
|  | MH | **Manholes** |  | 2026-12-20 | 2027-01-03 |  |  |  |  |  |  |  |
| CO-SD-MH-270 |  | Trench Excavation and Bedding Works for Manholes of Storm Drainage Network for Alignment-RD-02 | 4d | 2026-12-20 | 2026-12-23 | CO-EW-230, CO-SD-MH-180, ENG-MT-SD-ML-A-100, MS-CS-SD SS, CO-EW-220, ENG-MS-SD-ML-A-110, ENG-MT-SD-ML-A-110, ENG-SH-SD-ML-A-110, MS-MM-130, MS-MM-140 | -115d | 0d | Skilled Labor [24 h]; Unskilled Labor [24 h]; Excavator [24 h]; MH depth 1.5 - 2.5m [0.3]; MH depth 2.5 - 3.5m [0.3]; MH depth 3.5 - 4.5m [0.15]; MH depth > 4.50m; MH depth 2.5 -3.5m; MH depth > 3.50m | 7,653.01 | SD | CO-R26.S11-SD-180 |
| CO-SD-MH-280 |  | Install RC Footing Works for Manholes of Storm Drainage Network for Alignment-RD-02 | 3d | 2026-12-24 | 2026-12-27 | PRO-R25-SD-DL-100, CO-SD-MH-190, ENG-MT-SD-ML-A-100, MS-CS-SD SS, CO-EW-230, ENG-MS-SD-ML-A-110, ENG-MT-SD-ML-A-110, ENG-SH-SD-ML-A-110, MS-MM-130, MS-MM-140, CO-SD-MH-180, CO-SD-MH-270, PRO-R25-SD-DL-100 FF, PRO-SD-1DL-100 | -115d | 0d | Carpenter [48 h]; Steel fixer [48 h]; MH depth 1.5 - 2.5m [1.49]; MH depth 2.5 - 3.5m [1.49]; MH depth 3.5 - 4.5m [0.75]; MH depth > 4.50m; MH depth 2.5 -3.5m; MH depth > 3.50m | 38,265.06 | SD | CO-R26.S11-SD-190 |
| CO-SD-MH-290 |  | Install RC Wall Rings & Slab Works for Manholes of Storm Drainage Network for Alignment-RD-02 | 3d | 2026-12-28 | 2026-12-30 | CO-SD-MH-200, PRO-R25-SD-DL-100, CO-SD-MH-190, ENG-MT-SD-ML-A-100, MS-CS-SD SS, CO-EW-230, ENG-MS-SD-ML-A-110, ENG-MT-SD-ML-A-110, ENG-SH-SD-ML-A-110, MS-MM-130, MS-MM-140, CO-SD-MH-180, CO-SD-MH-280, PRO-SD-1DL-100 | -115d | 0d | Carpenter [48 h]; Steel fixer [48 h]; MH depth 1.5 - 2.5m [1.79]; MH depth 2.5 - 3.5m [1.79]; MH depth 3.5 - 4.5m [0.9]; MH depth > 4.50m; MH depth 2.5 -3.5m; MH depth > 3.50m | 45,918.07 | SD | CO-R26.S11-SD-200 |
| CO-SD-MH-300 |  | Backfilling Works for Manholes of Storm Drainage Network for Alignment-RD-02 | 3d | 2026-12-31 | 2027-01-03 | CO-SD-MH-220, PRO-SD-1DL-100, CO-SD-MH-200, PRO-R25-SD-DL-100, CO-SD-MH-190, ENG-MT-SD-ML-A-100, MS-CS-SD SS, CO-EW-230, ENG-MS-SD-ML-A-110, ENG-MT-SD-ML-A-110, ENG-SH-SD-ML-A-110, MS-MM-130, MS-MM-140, CO-SD-MH-180, CO-SD-MH-290 | -109d | 6d | Skilled Labor [48 h]; Water Tanker [48 h]; Loader [48 h]; MH depth 1.5 - 2.5m [0.9]; MH depth 2.5 - 3.5m [0.9]; MH depth 3.5 - 4.5m [0.45]; MH depth > 4.50m; MH depth 2.5 -3.5m; MH depth > 3.50m | 22,959.04 | SD | CO-R26.S11-SD-220 |
|  | ML | **Main Line Sections** |  | 2026-12-31 | 2027-01-10 |  |  |  |  |  |  |  |
| CO-SD-ML-170 |  | Trench Excavation and Bedding Works for Main Lines of Storm Drainage Network for Alignment-RD-02 | 3d | 2026-12-31 | 2027-01-03 | CO-EW-220, ENG-SH-SD-ML-A-110, ENG-MS-SD-ML-A-110, ENG-MT-SD-ML-A-110, MS-CS-SD SS, MS-MM-130, MS-MM-140, CO-SD-MH-290, CO-SD-MH-270 SS, CO-SD-MH-270 FF, CO-SD-ML-200 | -115d | 0d | Skilled Labor [168 h]; Unskilled Labor [168 h]; Excavator [168 h]; Depth Between 0m to 1.50m [74.33]; Depth Between 1.50m to 2.50m [34.28]; Depth Between 2.50m to 3.50m; Depth > 3.50m; Depth Between 0m to 1.50m [5.97]; Depth Between 1.50m to 2.50m [81.09]; Depth Between 2.50m to 3.50m [78.34]; Depth > 3.50m [3.36]; Depth Between 0m to 1.50m; Depth Between 1.50m to 2.50m [17.78]; Depth Between 3.50m to 4.50m; Depth > 4.50m; Depth Between 1.50m to 2.50m; Depth Between 3.50m to 4.50m [13.43]; Depth > 4.50m [3.58]; GRP Pipe, 900mm diameter with Depth Between 3.51m to 4.50m | 106,954.02 | SD |  |
| CO-SD-ML-180 |  | Pipes Laying Works for Main Lines of Storm Drainage Network for Alignment-RD-02 | 3d | 2027-01-04 | 2027-01-06 | CO-SD-ML-170, PRO-R25-SD-DL-120 FF, PRO-SD-1DL-110, CO-SD-MH-290, CO-SD-ML-210 | -115d | 0d | Skilled Labor [240 h]; Unskilled Labor [120 h]; Plumber [120 h]; Excavator [120 h]; Depth Between 0m to 1.50m [371.64]; Depth Between 1.50m to 2.50m [171.45]; Depth Between 2.50m to 3.50m; Depth > 3.50m; Depth Between 0m to 1.50m [29.85]; Depth Between 1.50m to 2.50m [405.48]; Depth Between 2.50m to 3.50m [235.04]; Depth > 3.50m [10.07]; Depth Between 0m to 1.50m; Depth Between 1.50m to 2.50m [88.87]; Depth Between 3.50m to 4.50m; Depth > 4.50m; Depth Between 1.50m to 2.50m; Depth Between 3.50m to 4.50m [40.3]; Depth > 4.50m [10.75]; GRP Pipe, 900mm diameter with Depth Between 3.51m to 4.50m | 451,754.62 | SD |  |
| CO-SD-ML-190 |  | Trench Backfilling and Compaction Works for Main Lines of Storm Drainage Network for Alignment-RD-02 | 3d | 2027-01-07 | 2027-01-10 | CO-SD-ML-180, CO-SD-ML-220, CO-SD-MH-300 FF | -115d | 0d | Skilled Labor [168 h]; Water Tanker [168 h]; Loader [168 h]; Compactor [168 h]; Depth Between 0m to 1.50m [148.66]; Depth Between 1.50m to 2.50m [68.58]; Depth Between 2.50m to 3.50m; Depth > 3.50m; Depth Between 0m to 1.50m [11.94]; Depth Between 1.50m to 2.50m [162.19]; Depth Between 2.50m to 3.50m [104.46]; Depth > 3.50m [4.48]; Depth Between 0m to 1.50m; Depth Between 1.50m to 2.50m [35.55]; Depth Between 3.50m to 4.50m; Depth > 4.50m; Depth Between 1.50m to 2.50m; Depth Between 3.50m to 4.50m [17.91]; Depth > 4.50m [4.78]; GRP Pipe, 900mm diameter with Depth Between 3.51m to 4.50m | 186,241.16 | SD |  |
|  | CB | **Catch Basin Sections** |  | 2027-01-11 | 2027-04-10 |  |  |  |  |  |  |  |
| CO-SD-CB-210 |  | Trench Excavation and Bedding Works for Catch Basins of Storm Drainage Network for Alignment-RD-02 | 18d | 2027-01-11 | 2027-01-31 | CO-SD-ML-220, CO-SD-ML-130, ENG-MT-SD-CB-A-110, ENG-SH-SD-CB-A-110, ENG-MS-SD-CB-A-110, MS-CS-SD SS, CO-SD-ML-190, MS-MM-130, MS-MM-140 | -84d | 0d | Skilled Labor [24 h]; Unskilled Labor [24 h]; Excavator [24 h]; Single Catch Basin 1000mm x 1000mm [9.85]; Double Catch Basin 1200mm x 2300mm | 50,769.38 | SD |  |
| CO-SD-CB-220 |  | Installation and Pipes Laying Connection Works for Catch Basins of Storm Drainage Network for Alignment-RD-02 | 19d | 2027-02-01 | 2027-02-22 | PRO-R25-SD-DL-110, PRO-R25-SD-DL-130, ENG-MT-SD-CB-A-110, ENG-SH-SD-CB-A-110, ENG-MS-SD-CB-A-110, MS-CS-SD SS, CO-SD-ML-130, MS-MM-130, MS-MM-140, CO-SD-ML-220, CO-SD-CB-210, PRO-R25-SD-DL-110 FF, PRO-R25-SD-DL-130 FF, PRO-SD-1DL-130, PRO-SD-1DL-120 | -84d | 32d | Skilled Labor [48 h]; Unskilled Labor [24 h]; Plumber [24 h]; Excavator [24 h]; Single Catch Basin 1000mm x 1000mm [22.99]; Double Catch Basin 1200mm x 2300mm | 118,461.88 | SD |  |
| CO-SD-CB-230 |  | Trench Backfilling and Compaction Works for Catch Basins of Storm Drainage Network for Alignment-RD-02 | 5d | 2027-04-05 | 2027-04-10 | CO-SD-ML-130, PRO-R25-SD-DL-110, PRO-R25-SD-DL-130, PRO-SD-1DL-130, PRO-SD-1DL-120, ENG-MT-SD-CB-A-110, ENG-SH-SD-CB-A-110, ENG-MS-SD-CB-A-110, MS-CS-SD SS, MS-MM-130, MS-MM-140, CO-SD-ML-220, CO-SD-CB-220, CO-SD-PO-110-P1 FF | -116d | 0d | Skilled Labor [24 h]; Water Tanker [24 h]; Loader [24 h]; Compactor [24 h]; Single Catch Basin 1000mm x 1000mm [6.57]; Double Catch Basin 1200mm x 2300mm | 33,846.25 | SD |  |

| ID | WBS | Activity | Duration | Start | Finish | Predecessors | Total float | Free float | Resources | Cost | Activity ID N | 01- Network |
| --- | --- | --- | --- | --- | --- | --- | --- | --- | --- | --- | --- | --- |
|  | SW | **Sewage Network** |  | 2027-01-11 | 2027-03-22 |  |  |  |  |  |  |  |
|  | 1 | **Manholes** |  | 2027-01-11 | 2027-03-22 |  |  |  |  |  |  |  |
| CO-SW-MH-260 |  | Excavation Works for Main Line Manholes of Sewage Network for Alignment-RD-02 | 11d | 2027-01-11 | 2027-01-23 | CO-EW-230, CO-SD-MH-220, PRO-SD-1DL-100, CO-SD-MH-200, PRO-R25-SD-DL-100, CO-SD-MH-190, ENG-MT-SD-ML-A-100, MS-CS-SD SS, ENG-MS-SD-ML-A-110, ENG-MT-SD-ML-A-110, ENG-SH-SD-ML-A-110, CO-SD-MH-180, ENG-MT-SW-ML-A-100, ENG-SH-SW-ML-A-110, MS-CS-SW SS, CO-EW-220, MS-MM-130, MS-MM-140, ENG-MS-SW-ML-A-110, CO-SD-MH-300, CO-SD-ML-190 | -115d | 0d | Skilled Labor [48 h]; Unskilled Labor [96 h]; Excavator [48 h]; Depth: 0 - 1.5m [0.22]; Depth: 1.51 - 2.5m [0.6]; Depth: 2.51 - 3.5m [0.3]; Depth: 3.51 - 4.5m [0.07]; Depth: 4.51 - 5.5m; Depth > 5.50m | 6,320.74 | CO-R26.S11-SW-160 | SW |
| CO-SW-MH-270 |  | Installation RC Footing Works for Main Line Manholes of Sewage Network for Alignment-RD-02 | 11d | 2027-01-24 | 2027-02-04 | PRO-SW-1DL-110 SS, ENG-MT-SW-ML-A-100, ENG-SH-SW-ML-A-110, MS-CS-SW SS, CO-EW-230, MS-MM-130, MS-MM-140, ENG-MS-SW-ML-A-110, CO-SD-MH-220, PRO-SD-1DL-100, CO-SD-MH-200, PRO-R25-SD-DL-100, CO-SD-MH-190, ENG-MT-SD-ML-A-100, MS-CS-SD SS, ENG-MS-SD-ML-A-110, ENG-MT-SD-ML-A-110, ENG-SH-SD-ML-A-110, CO-SD-MH-180, CO-SW-MH-260, PRO-SW-1DL-110, PRO-R25-SW-DL-110 | -115d | 0d | Carpenter [96 h]; Steel fixer [96 h]; Depth: 0 - 1.5m [1.12]; Depth: 1.51 - 2.5m [2.99]; Depth: 2.51 - 3.5m [1.49]; Depth: 3.51 - 4.5m [0.37]; Depth: 4.51 - 5.5m; Depth > 5.50m | 31,603.7 | CO-R26.S11-SW-170 | SW |
| CO-SW-MH-280 |  | Install Grp Liner Wall Works for Main Line Manholes of Sewage Network for Alignment-RD-02 | 12d | 2027-02-06 | 2027-02-18 | PRO-SW-1DL-110 SS, ENG-MT-SW-ML-A-100, ENG-SH-SW-ML-A-110, MS-CS-SW SS, CO-EW-230, MS-MM-130, MS-MM-140, ENG-MS-SW-ML-A-110, CO-SD-MH-220, PRO-SD-1DL-100, CO-SD-MH-200, PRO-R25-SD-DL-100, CO-SD-MH-190, ENG-MT-SD-ML-A-100, MS-CS-SD SS, ENG-MS-SD-ML-A-110, ENG-MT-SD-ML-A-110, ENG-SH-SD-ML-A-110, CO-SD-MH-180, CO-SW-MH-270 | -115d | 0d | Skilled Labor [288 h]; Plumber [288 h]; Depth: 0 - 1.5m [0.67]; Depth: 1.51 - 2.5m [1.79]; Depth: 2.51 - 3.5m [0.9]; Depth: 3.51 - 4.5m [0.22]; Depth: 4.51 - 5.5m; Depth > 5.50m | 18,962.22 | CO-R26.S11-SW-180 | SW |
| CO-SW-MH-290 |  | Pouring Grp Liner Wall Works for Main Line Manholes of Sewage Network for Alignment-RD-02 | 12d | 2027-02-20 | 2027-03-04 | PRO-SW-1DL-110 SS, ENG-MT-SW-ML-A-100, ENG-SH-SW-ML-A-110, MS-CS-SW SS, CO-EW-230, MS-MM-130, MS-MM-140, ENG-MS-SW-ML-A-110, CO-SD-MH-220, PRO-SD-1DL-100, CO-SD-MH-200, PRO-R25-SD-DL-100, CO-SD-MH-190, ENG-MT-SD-ML-A-100, MS-CS-SD SS, ENG-MS-SD-ML-A-110, ENG-MT-SD-ML-A-110, ENG-SH-SD-ML-A-110, CO-SD-MH-180, CO-SW-MH-280 | -115d | 0d | Carpenter [96 h]; Steel fixer [96 h]; Depth: 0 - 1.5m [0.67]; Depth: 1.51 - 2.5m [1.79]; Depth: 2.51 - 3.5m [0.9]; Depth: 3.51 - 4.5m [0.22]; Depth: 4.51 - 5.5m; Depth > 5.50m | 18,962.22 | CO-R26.S11-SW-190 | SW |
| CO-SW-MH-300 |  | Backfilling Works for Main Line Manholes of Sewage Network for Alignment-RD-02 | 12d | 2027-03-06 | 2027-03-22 | PRO-SW-1DL-110 SS, ENG-MT-SW-ML-A-100, ENG-SH-SW-ML-A-110, MS-CS-SW SS, CO-EW-230, MS-MM-130, MS-MM-140, ENG-MS-SW-ML-A-110, CO-SD-MH-220, PRO-SD-1DL-100, CO-SD-MH-200, PRO-R25-SD-DL-100, CO-SD-MH-190, ENG-MT-SD-ML-A-100, MS-CS-SD SS, ENG-MS-SD-ML-A-110, ENG-MT-SD-ML-A-110, ENG-SH-SD-ML-A-110, CO-SD-MH-180, CO-SW-MH-290 | -115d | 0d | Skilled Labor [48 h]; Water Tanker [48 h]; Loader [48 h]; Depth: 0 - 1.5m [0.67]; Depth: 1.51 - 2.5m [1.79]; Depth: 2.51 - 3.5m [0.9]; Depth: 3.51 - 4.5m [0.22]; Depth: 4.51 - 5.5m; Depth > 5.50m | 18,962.22 | CO-R26.S11-SW-200 | SW |
|  | ML | **Main Line Sections** |  | 2027-01-11 | 2027-03-22 |  |  |  |  |  |  |  |
| CO-SW-ML-170 |  | Trench Excavation and Bedding Works for Main Lines of Sewage Network for Alignment-RD-02 | 11d | 2027-01-11 | 2027-01-23 | CO-EW-230, CO-SD-ML-220, CO-SD-MH-220, PRO-SD-1DL-100, CO-SD-MH-200, PRO-R25-SD-DL-100, CO-SD-MH-190, ENG-MT-SD-ML-A-100, MS-CS-SD SS, ENG-MS-SD-ML-A-110, ENG-MT-SD-ML-A-110, ENG-SH-SD-ML-A-110, CO-SD-MH-180, ENG-MT-SW-ML-A-100, ENG-SH-SW-ML-A-110, ENG-MS-SW-ML-A-110, ENG-MT-SW-ML-A-110, MS-CS-SW SS, CO-EW-220, MS-MM-130, MS-MM-140, CO-SW-MH-260 SS, CO-SW-MH-260 FF, CO-SD-MH-300, CO-SD-ML-190 | -76d | 0d | Skilled Labor [48 h]; Unskilled Labor [48 h]; Excavator [48 h]; Depth Between 0m to 1.50m [9.4]; Depth Between 1.50m to 2.50m [15.94]; Depth > 2.50m [0.79]; Depth Between 0m to 1.50m [3.4]; Depth Between 1.50m to 2.50m [31.34]; Depth Between 2.50m to 3.50m [60.34]; Depth Between 3.50m to 4.50m; Depth Between 4.50m to 5.50m; Depth > 5.50m; HDPE Force Main (PE 100, SDR 11, PN 16 bar) DN 160 mm diameter, in trenches depth: 0- 1.5m; HDPE Force Main (PE 100, SDR 11, PN 16 bar) DN 160 mm diameter, in trenches depth: 1.51- 2.5m; Air valves with dia 50 mm; Gate valves Dia 50 mm; Air valve chamber (1000x 1000 mm) | 28,571.21 |  | SW |
| CO-SW-ML-180 |  | Pipes Laying Works for Main Lines of Sewage Network for Alignment-RD-02 | 11d | 2027-01-24 | 2027-02-04 | ENG-SH-SW-ML-A-110, ENG-MS-SW-ML-A-110, ENG-MT-SW-ML-A-110, MS-CS-SW SS, CO-EW-230, MS-MM-130, MS-MM-140, CO-SD-ML-220, CO-SD-MH-220, PRO-SD-1DL-100, CO-SD-MH-200, PRO-R25-SD-DL-100, CO-SD-MH-190, ENG-MT-SD-ML-A-100, MS-CS-SD SS, ENG-MS-SD-ML-A-110, ENG-MT-SD-ML-A-110, ENG-SH-SD-ML-A-110, CO-SD-MH-180, ENG-MT-SW-ML-A-100, CO-SW-ML-170, PRO-SW-1DL-100, PRO-R25-SW-DL-100 | -76d | 25d | Skilled Labor [96 h]; Unskilled Labor [48 h]; Plumber [48 h]; Excavator [48 h]; Depth Between 0m to 1.50m [47.01]; Depth Between 1.50m to 2.50m [79.67]; Depth > 2.50m [2.36]; Depth Between 0m to 1.50m [16.99]; Depth Between 1.50m to 2.50m [156.72]; Depth Between 2.50m to 3.50m [181.01]; Depth Between 3.50m to 4.50m; Depth Between 4.50m to 5.50m; Depth > 5.50m; HDPE Force Main (PE 100, SDR 11, PN 16 bar) DN 160 mm diameter, in trenches depth: 0- 1.5m; HDPE Force Main (PE 100, SDR 11, PN 16 bar) DN 160 mm diameter, in trenches depth: 1.51- 2.5m; Air valves with dia 50 mm; Gate valves Dia 50 mm; Air valve chamber (1000x 1000 mm) | 107,771.33 |  | SW |
| CO-SW-ML-190 |  | Trench Backfilling and Compaction Works for Main Lines of Sewage Network for Alignment-RD-02 | 11d | 2027-03-07 | 2027-03-22 | PRO-SW-1DL-110 SS, ENG-MT-SW-ML-A-100, ENG-SH-SW-ML-A-110, MS-CS-SW SS, CO-EW-230, MS-MM-130, MS-MM-140, ENG-MS-SW-ML-A-110, CO-SD-MH-220, PRO-SD-1DL-100, CO-SD-MH-200, PRO-R25-SD-DL-100, CO-SD-MH-190, ENG-MT-SD-ML-A-100, MS-CS-SD SS, ENG-MS-SD-ML-A-110, ENG-MT-SD-ML-A-110, ENG-SH-SD-ML-A-110, CO-SD-MH-180, PRO-SW-1DL-100, ENG-MT-SW-ML-A-110, CO-SD-ML-220, CO-SW-ML-180, CO-SW-MH-300 FF | -101d | 0d | Skilled Labor [56 h]; Water Tanker [56 h]; Loader [56 h]; Compactor [56 h]; Depth Between 0m to 1.50m [18.81]; Depth Between 1.50m to 2.50m [31.87]; Depth > 2.50m [1.04]; Depth Between 0m to 1.50m [6.79]; Depth Between 1.50m to 2.50m [62.69]; Depth Between 2.50m to 3.50m [80.45]; Depth Between 3.50m to 4.50m; Depth Between 4.50m to 5.50m; Depth > 5.50m; HDPE Force Main (PE 100, SDR 11, PN 16 bar) DN 160 mm diameter, in trenches depth: 0- 1.5m; HDPE Force Main (PE 100, SDR 11, PN 16 bar) DN 160 mm diameter, in trenches depth: 1.51- 2.5m; Air valves with dia 50 mm; Gate valves Dia 50 mm; Air valve chamber (1000x 1000 mm) | 45,443.01 |  | SW |
|  | TSE | **Treated Sewage Effluent (Tse)** |  | 2027-01-11 | 2027-02-27 |  |  |  |  |  |  |  |
| CO-TSE-ML-250 |  | Trench Excavation and Bedding Works for Main Lines of Treated Sewage Effluent (Tse) for Alignment-RD-02 | 12d | 2027-01-11 | 2027-01-24 | ENG-SH-TSE-ML-A-120, ENG-MS-TSE-ML-A-120, ENG-MT-IR-ML-A-120, MS-CS-TSE SS, CO-EW-220, MS-MM-130, MS-MM-140, CO-SW-MH-260 SS | -101d | 0d | Skilled Labor [168 h]; Unskilled Labor [168 h]; Excavator [168 h]; Depth Between 0m to 1.50m; Depth Between 1.50m to 2.50m; Depth > 2.50m; Depth Between 0m to 1.50m [9.73]; Depth Between 1.50m to 2.50m [9.48]; Depth > 2.50m [4.48]; Depth Between 0m to 1.50m [144.88]; Depth Between 1.50m to 2.50m [186.22]; Depth Between 0m to 1.50m [12.96]; Depth Between 1.50m to 2.50m [13.28] | 38,990.29 |  | TSE |
| CO-TSE-ML-260 |  | Pipes Laying Works for Main Lines of Treated Sewage Effluent (Tse) for Alignment-RD-02 | 17d | 2027-01-25 | 2027-02-13 | CO-TSE-ML-250, PRO-TSE-1DL-120, PRO-R25-TSE-DL-120 | -101d | 0d | Skilled Labor [288 h]; Unskilled Labor [144 h]; Plumber [144 h]; Excavator [144 h]; Depth Between 0m to 1.50m; Depth Between 1.50m to 2.50m; Depth > 2.50m; Depth Between 0m to 1.50m [48.69]; Depth Between 1.50m to 2.50m [47.4]; Depth > 2.50m [13.43]; Depth Between 0m to 1.50m [724.37]; Depth Between 1.50m to 2.50m [931.12]; Depth Between 0m to 1.50m [64.76]; Depth Between 1.50m to 2.50m [66.43] | 194,070.4 |  | TSE |
| CO-TSE-ML-280 |  | Trench Backfilling and Compaction Works for Treated Sewage Effluent (Tse) for Alignment-RD-02 | 12d | 2027-02-14 | 2027-02-27 | CO-TSE-ML-260 | -101d | 0d | Skilled Labor [160 h]; Water Tanker [160 h]; Loader [160 h]; Compactor [160 h]; Depth Between 0m to 1.50m; Depth Between 1.50m to 2.50m; Depth > 2.50m; Depth Between 0m to 1.50m [19.48]; Depth Between 1.50m to 2.50m [18.96]; Depth > 2.50m [5.97]; Depth Between 0m to 1.50m [289.75]; Depth Between 1.50m to 2.50m [372.45]; Depth Between 0m to 1.50m [25.91]; Depth Between 1.50m to 2.50m [26.57] | 77,686.3 |  | TSE |
|  | PW | **Potable Water Network** |  | 2027-02-28 | 2027-03-23 |  |  |  |  |  |  |  |
|  | ML | **Main Line Sections** |  | 2027-02-28 | 2027-03-22 |  |  |  |  |  |  |  |
| CO-PW-ML-170 |  | Trench Excavation and Bedding Works for Main Lines of Potable Water Network for Alignment-RD-02 | 5d | 2027-02-28 | 2027-03-04 | CO-TSE-ML-280, ENG-SH-PW-ML-A-110, ENG-MS-PW-ML-A-110, ENG-MT-PW-ML-A-100, MS-CS-PW SS, CO-EW-220, MS-MM-130, MS-MM-140, CO-TSE-ML-250 SS | -101d | 0d | Skilled Labor [40 h]; Unskilled Labor [40 h]; Excavator [40 h]; Depth Between 0m to 1.50m; Depth Between 1.50m to 2.50m; Depth > 2.50m; Depth Between 0m to 1.50m [13.06]; Depth Between 1.50m to 2.50m [19.03]; Depth Between 0m to 1.50m [7.46]; Depth Between 1.50m to 2.50m [1.49]; Depth > 2.50m [1.12]; Depth Between 0m to 1.50m [12.66]; Depth Between 1.50m to 2.50m [42.09] | 14,191.35 |  | PW |
| CO-PW-ML-180 |  | Pipes Laying and accessories for Main Lines of Potable Water Network for Alignment-RD-02 | 7d | 2027-03-06 | 2027-03-16 | CO-PW-ML-170, PRO-PW-1DL-100, PRO-R25-PW-DL-100 SS | -101d | 0d | Skilled Labor [112 h]; Unskilled Labor [56 h]; Plumber [56 h]; JCB [56 h]; Depth Between 0m to 1.50m; Depth Between 1.50m to 2.50m; Depth > 2.50m; Depth Between 0m to 1.50m [32.66]; Depth Between 1.50m to 2.50m [47.58]; Depth Between 0m to 1.50m [18.66]; Depth Between 1.50m to 2.50m [3.73]; Depth > 2.50m [1.69]; Depth Between 0m to 1.50m [31.64]; Depth Between 1.50m to 2.50m [105.22] | 35,342.29 |  | PW |
| CO-PW-ML-190 |  | Trench Backfilling and Compaction Works for Main Lines of Potable Water Network for Alignment-RD-02 | 5d | 2027-03-17 | 2027-03-22 | CO-PW-ML-180 | -100d | 16d | Skilled Labor [40 h]; Water Tanker [40 h]; Loader [40 h]; Compactor [40 h]; Depth Between 0m to 1.50m; Depth Between 1.50m to 2.50m; Depth > 2.50m; Depth Between 0m to 1.50m [26.12]; Depth Between 1.50m to 2.50m [38.06]; Depth Between 0m to 1.50m [14.93]; Depth Between 1.50m to 2.50m [2.99]; Depth > 2.50m [1.49]; Depth Between 0m to 1.50m [25.31]; Depth Between 1.50m to 2.50m [84.18] | 28,290.59 |  | PW |
|  | VC | **Valve Chamber** |  | 2027-02-28 | 2027-03-23 |  |  |  |  |  |  |  |
| CO-PW-VC-260 |  | Excavation Works for Main Line Valves and Valve Chambers of Potable Water Network for Alignment-RD-02 | 5d | 2027-02-28 | 2027-03-04 | CO-TSE-ML-310, ENG-MT-PW-ML-A-110, MS-CS-PW SS, CO-PW-ML-170 SS, CO-PW-ML-170 FF, MS-MM-130, MS-MM-140 | -101d | 0d | Unskilled Labor [40 h]; Excavator [40 h]; Gate valves Dia 50 mm; Gate valves Dia 100 mm [0.67]; Gate valves Dia 150 mm [1.12]; Gate valves Dia 250 mm [0.3]; Air valves with Dia 50 mm; Washout valve Dia 100 mm [0.07]; Wash out chamber (2500x 2500mm) [0.07]; Air valve chamber (1000x 1000 mm); Flow meter chamber (1500x 2500 mm); Flow meter dia 100 mm | 5,739.66 | CO-R26.S11-PW-170 | PW |
| CO-PW-VC200 |  | Installation of Valve Chambers of Potable Water Network for Alignment-RD-02 | 3d | 2027-03-06 | 2027-03-08 | CO-PW-VC-260, PRO-R25-PW-DL-120 | -101d | 0d | Skilled Labor [48 h]; Unskilled Labor [96 h]; Plumber [96 h]; Gate valves Dia 50 mm; Gate valves Dia 100 mm [6.99]; Gate valves Dia 150 mm [11.64]; Gate valves Dia 250 mm [3.1]; Air valves with Dia 50 mm; Washout valve Dia 100 mm [0.78]; Wash out chamber (2500x 2500mm) [0.78]; Air valve chamber (1000x 1000 mm); Flow meter chamber (1500x 2500 mm); Flow meter dia 100 mm | 59,692.52 | CO-R26.S11-PW-180 | PW |
| CO-PW-VC-270 |  | Installation Works for Valves of Potable Water Network for Alignment-RD-02 | 5d | 2027-03-13 | 2027-03-17 | CO-PW-VC200, PRO-PW-1DL-110, PRO-R25-PW-DL-110 SS | -101d | 0d | Skilled Labor [40 h]; Unskilled Labor [80 h]; Plumber [80 h]; Gate valves Dia 50 mm; Gate valves Dia 100 mm [1.75]; Gate valves Dia 150 mm [2.91]; Gate valves Dia 250 mm [0.78]; Air valves with Dia 50 mm; Washout valve Dia 100 mm [0.19]; Wash out chamber (2500x 2500mm) [0.19]; Air valve chamber (1000x 1000 mm); Flow meter chamber (1500x 2500 mm); Flow meter dia 100 mm | 14,923.13 | CO-R26.S11-PW-190 | PW |
| CO-PW-VC-280 |  | Backfilling Works for Main Line Valves and Valve Chambers of Potable Water Network for Alignment-RD-02 | 5d | 2027-03-18 | 2027-03-23 | CO-PW-VC-270 | -101d | 0d | Unskilled Labor [40 h]; Excavator [40 h]; Gate valves Dia 50 mm; Gate valves Dia 100 mm [1.34]; Gate valves Dia 150 mm [2.24]; Gate valves Dia 250 mm [0.6]; Air valves with Dia 50 mm; Washout valve Dia 100 mm [0.15]; Wash out chamber (2500x 2500mm) [0.15]; Air valve chamber (1000x 1000 mm); Flow meter chamber (1500x 2500 mm); Flow meter dia 100 mm | 11,479.33 | CO-R26.S11-PW-220 | PW |

| ID | WBS | Activity | Duration | Start | Finish | Predecessors | Total float | Free float | Resources | Cost | 01- Network |
| --- | --- | --- | --- | --- | --- | --- | --- | --- | --- | --- | --- |
|  | FH | **Fire Hydrant** |  | 2027-03-06 | 2027-03-23 |  |  |  |  |  |  |
| CO-PW-FH-200 |  | Excavation Works for Fire Hydrants of Potable Water Network for Alignment-RD-02 | 3d | 2027-03-06 | 2027-03-08 | CO-PW-VC-260, ENG-SH-PW-FH-A-110, ENG-MT-PW-FH-A-100, MS-CS-PW SS, CO-EW-220, MS-MM-130, MS-MM-140 | -97d | 4d | Skilled Labor [24 h]; Excavator [24 h]; 3-outlet fire hydrant (2 x 2.5 inch and 1 x 4.5 inch) in the form of a separate dry vacuum cylinder, complete according to drawings. [0.52] | 3,934.92 | PW |
| CO-PW-FH-210 |  | Installation Works for Fire Hydrant of Potable Water Network for Alignment-RD-02 | 3d | 2027-03-17 | 2027-03-20 | CO-PW-FH-200, PRO-PW-1DL-120, CO-PW-ML-180 | -101d | 0d | Skilled Labor [24 h]; Unskilled Labor [48 h]; Plumber [48 h]; 3-outlet fire hydrant (2 x 2.5 inch and 1 x 4.5 inch) in the form of a separate dry vacuum cylinder, complete according to drawings. [6.79] | 51,154.01 | PW |
| CO-PW-FH-220 |  | Trench Backfilling and Compaction Works for Fire Hydrants of Potable Water Network for Alignment-RD-02 | 3d | 2027-03-21 | 2027-03-23 | CO-PW-FH-210, CO-PW-VC-280 FF | -101d | 15d | Skilled Labor [24 h]; Water Tanker [24 h]; Loader [24 h]; Compactor [24 h]; 3-outlet fire hydrant (2 x 2.5 inch and 1 x 4.5 inch) in the form of a separate dry vacuum cylinder, complete according to drawings. [1.04] | 7,869.85 | PW |
|  | IR | **Irrigation Network** |  | 2027-03-07 | 2027-03-30 |  |  |  |  |  |  |
|  | ML | **Main Line Pipes** |  | 2027-03-07 | 2027-03-30 |  |  |  |  |  |  |
| CO-IR-ML-200 |  | Trench Excavation and Bedding Works for Main Lines of Irrigation Network for Alignment-RD-02 | 3d | 2027-03-07 | 2027-03-13 | ENG-SH-IR-ML-A-110, ENG-MS-IR-ML-A-110, ENG-MT-IR-ML-A-100, CO-PW-ML-170, MS-CS-IR SS, CO-EW-220, MS-MM-130, MS-MM-140, CO-IR-ML-350 | -87d | 3d | Unskilled Labor [24 h]; Excavator [24 h]; pipe line O.D 32 mm PN 10, in depth 0 to 1.5 m [123.13]; pipe line O.D 40 mm PN 10, in depth 0 to 1.5 m [111.94]; pipe line O.D 50 mm PN 10, in depth 0 to 1.5 m [33.58] | 6,921.75 | IR |
| CO-IR-ML-210 |  | Pipes Laying Works for Main Lines of Irrigation Network for Alignment-RD-02 | 3d | 2027-03-17 | 2027-03-20 | CO-IR-ML-200, PRO-IR-1DL-100, CO-PW-ML-180, PRO-R25-IR-DL-100, CO-IR-ML-360 | -90d | 0d | Skilled Labor [24 h]; Unskilled Labor [48 h]; Plumber [24 h]; Excavator [24 h]; pipe line O.D 32 mm PN 10, in depth 0 to 1.5 m [615.67]; pipe line O.D 40 mm PN 10, in depth 0 to 1.5 m [559.7]; pipe line O.D 50 mm PN 10, in depth 0 to 1.5 m [167.91] | 34,608.75 | IR |
| CO-IR-ML-220 |  | Installation Works for Main Line Valves of Irrigation Network for Alignment-RD-02 | 3d | 2027-03-21 | 2027-03-23 | CO-IR-ML-210, ENG-MT-IR-ML-A-110, PRO-IR-1DL-110, PRO-R25-IR-DL-110, CO-IR-ML-370 | -90d | 0d | Skilled Labor [24 h]; Unskilled Labor [48 h]; Plumber [48 h]; Gate valve 50 mm PN16 [5.97]; Direct Burried Gate valve 40 mm PN16 [4.48] | 9,940.84 | IR |
| CO-IR-ML-240 |  | Installation Works for Bulbblers And Sprinkler and Irrigation Control System of Irrigation Network for Alignment-RD-02 | 3d | 2027-03-24 | 2027-03-27 | CO-IR-ML-220, CO-IR-ML-390 | -90d | 0d | Skilled Labor [96 h]; Unskilled Labor [192 h]; Plumber [192 h]; Pressure–compensating bubblers 110 Lit/Hr [501.49]; Flushing Bronze gate valve dia 1.5" inside PVC box [11.94]; Air release valve 1.5" inside PVC box [11.94]; Extra flexible pressure compensating on surface inline dripline`s, O.D. is 16.1 mm [9850.75]; Electrical Solenoid Valve ( 1.5") inside PVC box [4.48]; Electrical Solenoid Valve ( 2") inside PVC box [7.46]; Quick coupling valve 1" inside a round valve box 10" size with a manual gate valve, hose swivel and key with all accessories [23.88]; Advanced Irrigation controller subject to client approval, can connect with Centarl Control system and cabable to integrate with Smart City systems,BMS or Scada system ,Can record the real flow rate per stations; Decoder cables 12 AWG between valves and controllers, The cables shall be pulled through 32? UPVC conduit and inspection 10" round valve box every 100 meters, as per standard specification and drawings [1567.16] | 202,190.93 | IR |
| CO-IR-ML-230 |  | Trench Backfilling and Compaction Works for Main Lines of Irrigation Network for Alignment-RD-02 | 3d | 2027-03-28 | 2027-03-30 | CO-IR-ML-240, CO-IR-ML-380 | -90d | 0d | Skilled Labor [24 h]; Excavator [24 h]; pipe line O.D 32 mm PN 10, in depth 0 to 1.5 m [246.27]; pipe line O.D 40 mm PN 10, in depth 0 to 1.5 m [223.88]; pipe line O.D 50 mm PN 10, in depth 0 to 1.5 m [67.16] | 13,843.5 | IR |
|  | MV | **Medium Voltage Network** |  | 2027-04-11 | 2027-04-24 |  |  |  |  |  |  |
|  | CW | **Cabling Works** |  | 2027-04-11 | 2027-04-24 |  |  |  |  |  |  |
| CO-MV-ML-310 |  | Trench Excavation and Bedding Works for Medium Voltage Network for Alignment-RD-02 | 4d | 2027-04-11 | 2027-04-14 | ENG-SH-MV-A-110, ENG-MS-MV-A-110, MS-CS-MV SS, CO-PW-FH-220, CO-SW-ML-190, CO-SD-CB-230, CO-SD-ML-190, CO-SD-MH-300, CO-SW-MH-300, CO-PW-VC-280, CO-EW-220, MS-MM-130, MS-MM-140, CO-PW-ML-190 | -116d | 0d | Skilled Labor [32 h]; Unskilled Labor [32 h]; Excavator [32 h]; Excavation for Trench size 40cm wide and 80cm deep (for 1 cable) [149.67]; Excavation for Trench Size 60cm wide and 80cm deep (for 2 cables) [74.7]; Excavation for Trench Size 90cm wide and 80cm deep (for 3 cables); Excavation for Trench Size 180cm wide and 80cm deep (for 6 cables); Excavation for Trench Size 210 cm wide and 80cm deep (for 7 cables); Excavation for Trench Size 240cm wide and 80cm deep (for 8 cables) | 6,169.54 | MV |
| CO-MV-ML-320 |  | Duct Laying Works for Medium Voltage Network for Alignment-RD-02 | 4d | 2027-04-15 | 2027-04-19 | CO-MV-ML-310, PRO-MV-DL-100, PRO-MV-1DL-100 | -116d | 0d | Unskilled Labor [128 h]; Electrician [32 h]; JCB [32 h]; Duct bank for (33) cables; Duct bank for (21) cables; Duct bank for (15) cables [19.7]; HV Cable Road Crossing [2.63] | 15,103.17 | MV |
| CO-MV-ML-330 |  | Trench Backfilling and Compaction Works for Medium Voltage Network for Alignment-RD-02 | 4d | 2027-04-20 | 2027-04-24 | CO-MV-ML-320 | -116d | 0d | Skilled Labor [64 h]; Water Tanker [32 h]; JCB [32 h]; Duct bank for (33) cables; Duct bank for (21) cables; Duct bank for (15) cables [8.96]; HV Cable Road Crossing [1.19] | 6,865.08 | MV |
|  | LV | **Low Voltage Network** |  | 2027-03-31 | 2027-05-22 |  |  |  |  |  |  |
|  | MLVC | **Main Low Voltage Cables Works ( Cable 300 MM )** |  | 2027-03-31 | 2027-05-10 |  |  |  |  |  |  |
| CON-LV-ML-170 |  | Cable Laying Works for Main Cable of Low Voltage Network for Alignment-RD-02 | 12d | 2027-03-31 | 2027-04-13 | CO-IR-ML-230, PRO-LV-ML-1DL-100, PRO-LV-ML-DL-100 | -90d | 18d | Skilled Labor [48 h]; Unskilled Labor [192 h]; Electrician [48 h]; JCB [48 h]; 4C-300mm2 CU/XLPE / PVC ARMORED CABLE [8.63]; 4C-240mm2 CU/XLPE / PVC ARMORED CABLE [4.93]; 4C-185mm2 CU/XLPE / PVC ARMORED CABLE [4.93]; 4C-50mm2 CU/XLPE / PVC ARMORED CABLE [18.48]; 4C-16mm2 CU/XLPE / PVC ARMORED CABLE [425.43]; 4C-16MM2 CU/XLPE / PVC CABLE [171.78]; 1Cx150sq.mm2,Cu, PVC wire [8.63]; 1Cx120sq.mm2,Cu, PVC wire [11.09]; 1Cx95sq.mm,Cu, PVC wire [4.93]; 1Cx70sq.mm2,Cu, PVC wire [2.46]; 1Cx25sq.mm2,Cu, PVC wire [11.09]; 1Cx16sq.mm2,Cu, PVC wire [425.43]; 1Cx10sq.mm2,Cu, PVC wire [3.7] | 38,755.14 | LV |
| CON-LV-ML-160 |  | Trench Excavation and Bedding Works for Main Cable of Low Voltage Network for Alignment-RD-02 | 5d | 2027-04-25 | 2027-04-29 | CO-SD-CB-230, CO-PW-ML-190, ENG-SH-LV-A-120, ENG-MS-MV-A-120, MS-CS-LV SS, CO-MV-ML-330, CO-SW-ML-190, CO-EW-220, MS-MM-130, MS-MM-140 | -116d | 0d | Skilled Labor [40 h]; Unskilled Labor [40 h]; Excavator [40 h]; Road crossing ducts, 2 ways (2 x 150mm HDPE) [61.43]; Road crossing ducts, 2 ways (2 x 110mm UPVC) [24.4]; Road crossing ducts, 3 ways (3 x 110mm UPVC) [8.1] | 13,674.63 | LV |
| CON-LV-ML-180 |  | Trench Backfilling and Compaction Works for Main Cable of Low Voltage Network for Alignment-RD-02 | 9d | 2027-05-01 | 2027-05-10 | CON-LV-ML-160 | -107d | 1d | Skilled Labor [144 h]; Water Tanker [72 h]; JCB [72 h]; 4C-300mm2 CU/XLPE / PVC ARMORED CABLE [3.93]; 4C-240mm2 CU/XLPE / PVC ARMORED CABLE [2.24]; 4C-185mm2 CU/XLPE / PVC ARMORED CABLE [2.24]; 4C-50mm2 CU/XLPE / PVC ARMORED CABLE [8.4]; 4C-16mm2 CU/XLPE / PVC ARMORED CABLE [193.37]; 4C-16MM2 CU/XLPE / PVC CABLE [78.07]; 1Cx150sq.mm2,Cu, PVC wire [3.93]; 1Cx120sq.mm2,Cu, PVC wire [5.04]; 1Cx95sq.mm,Cu, PVC wire [2.24]; 1Cx70sq.mm2,Cu, PVC wire [1.12]; 1Cx25sq.mm2,Cu, PVC wire [5.04]; 1Cx16sq.mm2,Cu, PVC wire [193.37]; 1Cx10sq.mm2,Cu, PVC wire [1.69] | 17,619.04 | LV |
|  | SLVC | **Service Low Voltage Cables Works ( Cable 70 MM )** |  | 2027-05-01 | 2027-05-22 |  |  |  |  |  |  |
| CON-LV-HC-160 |  | Trench Excavation and Bedding Works for Service Cable of Low Voltage Network for Alignment-RD-02 | 4d | 2027-05-01 | 2027-05-04 | CON-LV-ML-160, ENG-MS-MV-A-120, MS-CS-LV SS, CO-EW-220, ENG-SH-LV-A-120, MS-MM-130, MS-MM-140, CO-PW-ML-190, CO-PW-VC-280, CO-PW-FH-220, CO-TSE-ML-280, CO-SW-ML-190, CO-SW-MH-300, CO-SD-CB-230, CO-SD-ML-190, CO-SD-MH-300 | -108d | 0d | Skilled Labor [32 h]; Unskilled Labor [32 h]; Excavator [32 h]; Road crossing ducts, 2 ways (2 x 150mm HDPE) [30.72]; Road crossing ducts, 2 ways (2 x 110mm UPVC) [12.21]; Road crossing ducts, 3 ways (3 x 110mm UPVC) [4.06] | 6,839.16 | LV |
| CON-LV-HC-170 |  | Cable Laying Works for Service Cable of Low Voltage Network for Alignment-RD-02 | 6d | 2027-05-05 | 2027-05-11 | CON-LV-HC-160, CON-LV-ML-170, PRO-LV-HC-1DL-100, PRO-LV-HC-DL-100 | -108d | 0d | Skilled Labor [48 h]; Unskilled Labor [192 h]; Electrician [48 h]; JCB [48 h]; 4C-300mm2 CU/XLPE / PVC ARMORED CABLE [8.63]; 4C-240mm2 CU/XLPE / PVC ARMORED CABLE [4.93]; 4C-185mm2 CU/XLPE / PVC ARMORED CABLE [4.93]; 4C-50mm2 CU/XLPE / PVC ARMORED CABLE [18.48]; 4C-16mm2 CU/XLPE / PVC ARMORED CABLE [425.43]; 4C-16MM2 CU/XLPE / PVC CABLE [171.78]; 1Cx150sq.mm2,Cu, PVC wire [8.63]; 1Cx120sq.mm2,Cu, PVC wire [11.09]; 1Cx95sq.mm,Cu, PVC wire [4.93]; 1Cx70sq.mm2,Cu, PVC wire [2.46]; 1Cx25sq.mm2,Cu, PVC wire [11.09]; 1Cx16sq.mm2,Cu, PVC wire [425.43]; 1Cx10sq.mm2,Cu, PVC wire [3.7] | 38,755.14 | LV |
| CON-LV-HC-180 |  | Trench Backfilling and Compaction Works for Service Cable of Low Voltage Network for Alignment-RD-02 | 4d | 2027-05-12 | 2027-05-22 | CON-LV-HC-170, CON-LV-ML-180 | -108d | 0d | Skilled Labor [192 h]; Water Tanker [96 h]; JCB [96 h]; 4C-300mm2 CU/XLPE / PVC ARMORED CABLE [3.93]; 4C-240mm2 CU/XLPE / PVC ARMORED CABLE [2.24]; 4C-185mm2 CU/XLPE / PVC ARMORED CABLE [2.24]; 4C-50mm2 CU/XLPE / PVC ARMORED CABLE [8.4]; 4C-16mm2 CU/XLPE / PVC ARMORED CABLE [193.37]; 4C-16MM2 CU/XLPE / PVC CABLE [78.07]; 1Cx150sq.mm2,Cu, PVC wire [3.93]; 1Cx120sq.mm2,Cu, PVC wire [5.04]; 1Cx95sq.mm,Cu, PVC wire [2.24]; 1Cx70sq.mm2,Cu, PVC wire [1.12]; 1Cx25sq.mm2,Cu, PVC wire [5.04]; 1Cx16sq.mm2,Cu, PVC wire [193.37]; 1Cx10sq.mm2,Cu, PVC wire [1.69] | 17,619.04 | LV |

| ID | WBS | Activity | Duration | Start | Finish | Predecessors | Total float | Free float | Resources | Cost | 01- Network | Activity ID N |
| --- | --- | --- | --- | --- | --- | --- | --- | --- | --- | --- | --- | --- |
|  | DP | **Distribution Pillars Works** |  | 2027-04-25 | 2027-05-10 |  |  |  |  |  |  |  |
| CON-LV-DP-160 |  | Foundation Excavation Works for Distribution Pillars of Low Voltage Network for Alignment-RD-02 | 6d | 2027-04-25 | 2027-05-01 | CON-LV-ML-160 SS, CON-LV-ML-160 FF, ENG-MS-MV-A-120, MS-CS-LV SS, CO-EW-220, MS-MM-130, MS-MM-140 | -116d | 0d | Unskilled Labor [176 h]; Excavator [88 h]; Road crossing ducts, 2 ways (2 x 150mm HDPE) [10.24]; Road crossing ducts, 2 ways (2 x 110mm UPVC) [4.07]; Road crossing ducts, 3 ways (3 x 110mm UPVC) [1.36] | 2,280.95 | LV |  |
| CON-LV-DP-170 |  | Pouring Plain Concrete For Distribution Pillar Units of Low Voltage Network for Alignment-RD-02 | 4d | 2027-05-02 | 2027-05-05 | CON-LV-DP-160 | -96d | 0d | Skilled Labor [32 h]; Mason [32 h]; Carpenter [64 h]; Supply and installation of KWH meter mounting frame including concrete block for installation of KWH meter according to the standards and specifications of SEC. [1.57] | 1,882.95 | LV |  |
| CON-LV-DP-180 |  | Installation Works for Distribution Pillar Units of Low Voltage Network for Alignment-RD-02 | 4d | 2027-05-06 | 2027-05-10 | CON-LV-DP-170, PRO-LV-DP-1DL-100, PRO-LV-DP-DL-100 SS | -96d | 0d | Unskilled Labor [32 h]; Electrician [32 h]; Supply and installation of KWH meter mounting frame including concrete block for installation of KWH meter according to the standards and specifications of SEC. [1.57] | 1,882.95 | LV |  |
|  | SL | **Street Lighting Network** |  | 2027-05-02 | 2027-05-31 |  |  |  |  |  |  |  |
|  | LP | **Lighting Poles Works** |  | 2027-05-02 | 2027-05-13 |  |  |  |  |  |  |  |
| CO-SL-LP-400 |  | Installation Works for Lighting Poles Foundation of Street Lighting Network for Alignment-RD-02 | 4d | 2027-05-02 | 2027-05-05 | ENG-SH-SL-A-110, ENG-MS-SL-A-110, ENG-MT-SL-A-100, MS-CS-SL SS, CO-EW-220, MS-MM-130, MS-MM-140, CON-LV-DP-160, PRO-R25-SL-DL-110 | -116d | 0d | Unskilled Labor [64 h]; Excavator [32 h]; Lighting poles with 1 arm, height of (12) meters, including the power distribution box, cables, and RCC foundation. [3.93]; Lighting poles with 2 arms, height of (12) meters, including the power distribution box, cables, and RCC foundation. | 9,457.8 | SL |  |
| CO-SL-LP-410 |  | Installation Works for Lighting Poles of Street Lighting Network for Alignment-RD-02 | 4d | 2027-05-06 | 2027-05-10 | CO-SL-LP-400, ENG-MT-SL-A-110, PRO-R25-SL-DL-120 | -116d | 0d | Unskilled Labor [64 h]; Boom Truck [32 h]; Lighting poles with 1 arm, height of (12) meters, including the power distribution box, cables, and RCC foundation. [13.06]; Lighting poles with 2 arms, height of (12) meters, including the power distribution box, cables, and RCC foundation. | 31,466.05 | SL |  |
| CO-SL-LP-430 |  | Backfilling Works for Lighting Poles of Street Lighting Network for Alignment-RD-02 | 3d | 2027-05-11 | 2027-05-13 | CO-SL-LP-410 | -116d | 0d | Unskilled Labor [24 h]; Excavator [24 h]; Lighting poles with 1 arm, height of (12) meters, including the power distribution box, cables, and RCC foundation. [1.31]; Lighting poles with 2 arms, height of (12) meters, including the power distribution box, cables, and RCC foundation. | 3,164.59 | SL | CO-R26.S11-SL-210 |
|  | CW | **Cabling Works** |  | 2027-05-02 | 2027-05-09 |  |  |  |  |  |  |  |
| CO-SL-CL-320 |  | Cable Laying Works for Street Lighting Network for Alignment-RD-02 | 4d | 2027-05-02 | 2027-05-05 | ENG-SH-SL-A-110, ENG-MS-SL-A-110, ENG-MT-SL-ML-A-100, PRO-SL-1DL-100, MS-CS-SL SS, MS-MM-130, MS-MM-140, CO-MV-ML-330, CO-IR-ML-230, CO-PW-ML-190, CO-PW-FH-220, CO-SW-ML-190, CO-SW-MH-300, CO-SD-CB-230, CO-SD-ML-190, CO-SD-MH-300, CO-EW-220, ENG-MT-SL-A-100, CON-LV-DP-160, PRO-R25-SL-DL-100 | -112d | 0d | Skilled Labor [32 h]; Unskilled Labor [64 h]; Electrician [32 h]; JCB [32 h]; Lighting poles with 1 arm, height of (12) meters, including the power distribution box, cables, and RCC foundation. [14.37]; Lighting poles with 2 arms, height of (12) meters, including the power distribution box, cables, and RCC foundation. | 34,630.64 | SL |  |
| CO-SL-CL-330 |  | Trench Backfilling and Compaction Works for Street Lighting Network for Alignment-RD-02 | 3d | 2027-05-06 | 2027-05-09 | CO-SL-CL-320 | -112d | 4d | Skilled Labor [24 h]; Water Tanker [24 h]; Excavator [24 h]; Lighting poles with 1 arm, height of (12) meters, including the power distribution box, cables, and RCC foundation. [11.76]; Lighting poles with 2 arms, height of (12) meters, including the power distribution box, cables, and RCC foundation. | 28,337.43 | SL |  |
|  | DPB | **Distrubution Panel Boards** |  | 2027-05-20 | 2027-05-31 |  |  |  |  |  |  |  |
| CO-SL-DB-330 |  | Installation Works for Panel Board Concrete Foundations of Street Lighting Network for Alignment-RD-02 | 3d | 2027-05-20 | 2027-05-23 | CO-SL-LP-430, CO-SL-CL-330, ENG-MT-SL-DB-A-100, MS-CS-SL SS, CO-EW-220, MS-MM-130, MS-MM-140, PRO-R25-SL-DL-160 | -116d | 0d | Unskilled Labor [16 h]; Excavator [8 h]; Street Lighting panels LCP (01) [0.22] | 3,544.58 | SL |  |
| CO-SL-DB-340 |  | Installation Works for Lighting Panel Boards of Street Lighting Network for Alignment-RD-02 | 7d | 2027-05-24 | 2027-05-31 | CO-SL-DB-330 | -116d | 0d | Unskilled Labor [16 h]; Boom Truck [8 h]; Street Lighting panels LCP (01) [0.82] | 12,996.8 | SL |  |
|  | TE | **Telecom and Light Current Network** |  | 2027-04-25 | 2027-06-12 |  |  |  |  |  |  |  |
|  | PD | **Ducts Works** |  | 2027-06-01 | 2027-06-12 |  |  |  |  |  |  |  |
| CO-TE-DW-190 |  | Pipes Laying Works for Ducts of Telecom Network for Alignment-RD-02 | 5d | 2027-06-01 | 2027-06-06 | ENG-SH-TE-A-110, ENG-MS-TE-A-110, ENG-MT-TE-A-100, PRO-TE-1DL-100, MS-CS-TE SS, MS-MM-130, MS-MM-140, CO-SD-MH-300, CO-SD-ML-190, CO-SD-CB-230, CO-SW-MH-300, CO-SW-ML-190, CO-PW-ML-190, CO-PW-VC-280, CO-PW-FH-220, CO-IR-ML-230, CO-MV-ML-330, CON-LV-ML-180, CON-LV-HC-180, CO-SL-LP-430, CO-SL-CL-330, CO-EW-220, CO-SL-DB-340, PRO-R25-TE-DL-100 | -116d | 0d | Skilled Labor [40 h]; Unskilled Labor [80 h]; Electrician [40 h]; 2-ways ducts, 32mm diameter [235.6]; 2x3-ways ducts, 50mm diameter [747.01]; 8-ways ducts, 6 x 160mm & 2 x 100mm [56.03]; 2 PVC ducts 150x200 mm (60mm diameter) [41.04]; 4 PVC ducts 600x150 mm (60mm diameter) [41.04]; 8 PVC ducts 1000x300 mm (60mm diameter) [41.04]; 6 PVC ducts 600x800 mm (60mm diameter) [82.09] | 79,874.79 | TE |  |
| CO-TE-DW-200 |  | Trench Backfilling and Compaction Works for Ducts of Telecom Network for Alignment-RD-02 | 5d | 2027-06-07 | 2027-06-12 | CO-TE-DW-190, CO-TE-MH-220 FF | -116d | 0d | Skilled Labor [40 h]; Excavator [40 h]; 2-ways ducts, 32mm diameter [107.09]; 2x3-ways ducts, 50mm diameter [339.55]; 8-ways ducts, 6 x 160mm & 2 x 100mm [25.46]; 2 PVC ducts 150x200 mm (60mm diameter) [18.66]; 4 PVC ducts 600x150 mm (60mm diameter) [18.66]; 8 PVC ducts 1000x300 mm (60mm diameter) [18.66]; 6 PVC ducts 600x800 mm (60mm diameter) [37.31] | 36,305.65 | TE |  |
|  | MH | **Manholes Works** |  | 2027-04-25 | 2027-05-04 |  |  |  |  |  |  |  |
| CO-TE-MH-200 |  | Excavation Works for Manholes of Telecom Network for Alignment-RD-02 | 3d | 2027-04-25 | 2027-04-27 | ENG-MT-TE-A-100, PRO-TE-1DL-100, CO-SD-MH-300, CO-SD-ML-190, CO-SD-CB-230, CO-SW-MH-300, CO-SW-ML-190, CO-PW-ML-190, CO-PW-VC-280, CO-PW-FH-220, CO-IR-ML-230, CO-MV-ML-330, CO-EW-220, ENG-SH-TE-A-110, ENG-MS-TE-A-110, ENG-MT-TE-A-110, PRO-TE-1DL-110, MS-CS-TE SS, MS-MM-130, MS-MM-140 | -91d | 0d | Unskilled Labor [48 h]; JCB [24 h]; Manhole Type 3 (1200 x 1200 x 2000) [0.52]; Manhole Type 1 (800 x 600 x 1200) [0.22] | 2,040.81 | TE |  |
| CO-TE-MH-210 |  | Installation Works for Manholes of Telecom Network for Alignment-RD-02 | 3d | 2027-04-28 | 2027-05-01 | CO-TE-MH-200, PRO-R25-TE-DL-110 | -91d | 0d | Unskilled Labor [48 h]; Boom Truck [24 h]; Manhole Type 3 (1200 x 1200 x 2000) [5.75]; Manhole Type 1 (800 x 600 x 1200) [2.46] | 22,448.86 | TE |  |
| CO-TE-MH-220 |  | Backfilling Works for Manholes of Telecom Network for Alignment-RD-02 | 3d | 2027-05-02 | 2027-05-04 | CO-TE-MH-210 | -91d | 0d | Unskilled Labor [48 h]; Boom Truck [24 h]; Manhole Type 3 (1200 x 1200 x 2000) [1.57]; Manhole Type 1 (800 x 600 x 1200) [0.67] | 6,122.42 | TE |  |
|  | DD | **CCTV, Telephone, MSN, ACs System Works** |  | 2027-05-05 | 2027-05-11 |  |  |  |  |  |  |  |
| CO-TE-CTV-180 |  | Installation of CCTV, Telephone, ACS and MSN Systems Cables for Alignment-RD-02 | 6d | 2027-05-05 | 2027-05-11 | CO-TE-MH-220, ENG-SH-MSN-A-120, ENG-SH-CTV-A-110, ENG-MS-CTV-A-110, ENG-MT-CTV-A-100, PRO-CTV-1DL-100, MS-CS-TE SS, MS-MM-130, MS-MM-140, CO-TE-MH-250, CO-TE-MH-160, PRO-R25-CTV-DL-100, CO-TE-CTV-210 | -80d | 1d | Skilled Labor [48 h]; Unskilled Labor [96 h]; Electrician [48 h]; NVR Server with RAID (5, 6 or 10) to record all cameras storage 80TB with all hardware / software / licenses etc. [0.48]; VMS Server with RAID (5, 6 or 10) complete Hardware / Software with one Color Laser Printer and all associated accessories for central management. [0.48]; Licenses for Cameras, Workstations and Keyboards [0.24]; Work Station (MMI with two monitors each, for Monitoring for CCTV & ACS) [0.24]; Keyboard with joystick for CCTV with all accessories as per specification [0.24]; Pole mounted IP( PoE) Fixed camera, 5MP,IP 66, IR illumination, 3-8mm varifocal, auto iris lens type [9.55]; Wall mounted IP( PoE) Fixed camera, 5MP,IP 66, IR illumination, 3-8mm varifocal, auto iris lens type [11.7]; 5MP Dome camera ceiling Mounted IP (PoE) indoor [4.06]; 5MP PTZ Multi Sensor Camera IP(PoE) 360 Degree View Outdoor with accessories (IP 66) [1.67]; 8 Port Industrial PoE Switch 10/100BaseT (0 deg to +70 deg. Celsius) [2.63]; Filed Equipment cabinet (FEC), with fan and ventilation, NEMEX 4X ,door, minimum size (600x600x400mm), the cabinet/enclosure includes industrial switch and UPS. [2.63]; IP Phone Communication server (hot standby) 50 Port equipped, Gateway, Gatekeeper, H.323, SIP, redundant Power etc. [0.72]; IP Phone Voice gateway [0.24]; Voice IP Phone [0.24]; NMS Server for IP phone and NETWORK Elements [0.24]; NMS Workstation [0.24]; Firm Ware, software & licenses [0.24]; Data Cable [0.24]; Power Cable [0.24]; Layer 3, 24 Port non-PoE switch10/1000BaseT/LX (-40 deg to +70 deg. Celsius), stack module and associated accessories for utility Telecom Server room [0.48]; Layer 2, 24 Port non-PoE switch10/1000BaseT (-40 deg to +70 deg. Celsius), stack module and associated accessories for utility Telecom Server and Security Guard house room [1.43]; Network Management System Server [0.48]; Network Management System workstation [0.24]; 42U rack dimension (W x H x L) 800 x 2000 x 1000 mm [0.48]; 12U rack dimension (W x H x L) 600 x 625 x 600 mm [0.24]; 06C Optical Fiber SM [434.63]; 48C Optical Fiber SM [1385.07]; 48 Core Splice Closure [1.67]; Optical fiber patch cord 5m [5.73]; Data Cable (STP CAT 6A) [2464.48]; 3C Power Cable armored 1.5mm2 [2464.48]; 3C Power Cable armored 2.5 mm2 [2464.48]; UTP CAT6A Patch Cord 1m/3m/5m [5.49]; Access Control Unit [1.19]; Access Card Reader [1.19]; Magnetic Lock [1.19]; Break Glass [0.96]; Exit Push button [1.19]; Door Sensor [1.19]; Biometrics Reader [1.91]; Smart Card Printer [0.24]; Card Issue Work Station [0.24]; Photographic Camera with stand [0.24]; Interface modules with CCTV, Fire and other systems [0.24]; 1-ways ducts, 6 x 50mm diameter [121.79]; 6 PVC ducts 150x200 mm (60mm diameter) [27.46] | 504,071.3 | CTV |  |

| ID | WBS | Activity | Duration | Start | Finish | Predecessors | Total float | Free float | Resources | Cost | 01- Network | Activity ID N |
| --- | --- | --- | --- | --- | --- | --- | --- | --- | --- | --- | --- | --- |
|  | RD | **Road Works** |  | 2027-05-23 | 2027-06-21 |  |  |  |  |  |  |  |
|  | RD | **Roads Works** |  |  |  |  |  |  |  |  |  |  |
|  | LS | **Pavement Works** |  | 2027-05-23 | 2027-06-07 |  |  |  |  |  |  |  |
| CO-RD-PV-200 |  | Fixing of Curbstone for Sidewalks Pavement for Alignment-RD-02 | 5d | 2027-05-23 | 2027-05-27 | PRO-R25-RD-DL-110, PRO-RD-1DL-110, CO-EW-220, CO-SD-ML-190, CO-SD-MH-300, CO-SD-CB-230, CO-SW-ML-190, CO-SW-MH-300, CO-PW-ML-190, CO-PW-VC-280, CO-IR-ML-230, CO-TSE-ML-280, CO-MV-ML-330, CO-SL-LP-430, CO-SL-CL-330, ENG-MS-RD-A-20, ENG-MS-RD-A-30, ENG-MS-RD-A-40, PRO-R25-RD-DL-100, CON-LV-HC-180, CON-LV-ML-180, ENG-MS-RD-A-10, ENG-SH-RD-A-100, ENG-SH-RD-A-110, MS-CS-RD SS, PRO-RD-1DL-100, MS-MM-130, MS-MM-140, CO-PW-FH-220, CO-TE-MH-220, CON-LV-DP-180, ENG-MS-HS-A-10, PRO-R25-RD-DL-130, PRO-RD-1DL-150 | -101d | 0d | Pavement Labor [480 h]; Bobcat [120 h]; JCB [120 h]; Precast Concrete Curbstone 150X300X900 Type (K1-A) [2741.6]; Precast Concrete Curbstone 100X200X500 Type (K4) [1075.94]; Precast Concrete Curbstone 150X300X500 Type (K1-B) [237.37]; Precast Concrete Curbstone Type (K1-C) [16.61]; Flush Kerb Type (D) [30.06] | 131,137.42 | RD |  |
| CO-RD-PV-210 |  | Fixing of Interlock Tiles for Sidewalks Pavement for Alignment-RD-02 | 9d | 2027-05-29 | 2027-06-07 | CO-RD-PV-200, ENG-MS-HS-A-10, PRO-R25-RD-DL-120, PRO-RD-1DL-140 | -101d | 4d | Pavement Labor [2768 h]; Bobcat [2128 h]; JCB [2128 h]; 60mm thick [7620.66]; 80mm thick [14971.5] | 1,207,402.36 | RD |  |
|  | TS | **Traffic Signs Boards and Roads Marking** |  | 2027-06-13 | 2027-06-21 |  |  |  |  |  |  |  |
| CO-RD-F-RM-200 |  | Application of Road Marking Works For Road Works for Alignment-RD-02 | 4d | 2027-06-13 | 2027-06-16 | PRO-R25-RD-DL-110, PRO-RD-1DL-110, CO-EW-220, CO-SD-ML-190, CO-SD-MH-300, CO-SD-CB-230, CO-SW-ML-190, CO-SW-MH-300, CO-PW-ML-190, CO-PW-VC-280, CO-IR-ML-230, CO-TSE-ML-280, CO-MV-ML-330, CO-SL-LP-430, CO-SL-CL-330, ENG-MS-RD-A-20, ENG-MS-RD-A-30, ENG-MS-RD-A-40, PRO-R25-RD-DL-100, CON-LV-HC-180, CON-LV-ML-180, ENG-MS-RD-A-10, ENG-SH-RD-A-100, ENG-SH-RD-A-110, MS-CS-RD SS, PRO-RD-1DL-100, MS-MM-130, MS-MM-140, CO-TE-DW-200, CO-PW-FH-220, CO-TE-MH-220, CON-LV-DP-180, CO-RD-PV-210, ENG-MS-MRK-A-10, PRO-R25-RD-DL-150, ENG-SH-MRK-A-110, PRO-RD-1DL-170, CO-RD-PV-200 | -105d | 0d | Skilled Labor [32 h]; Road Painter [32 h]; Retroreflective Thermoplastic White Traffic lines [241.33]; Retroreflective Thermoplastic Yellow, Traffic lines [363.43]; Precast Concrete Blister Warning Tactile Paver Brown Finish 300*300*60mm [6] | 17,727.56 | RD |  |
| CO-RD-F-TS-140 |  | Installation Works of Traffic Signs Boards For Road Works for Alignment-RD-02 | 4d | 2027-06-17 | 2027-06-21 | CO-RD-F-RM-200, ENG-MS-TSB-A-10, PRO-R25-RD-DL-140, ENG-SH-TSB-A-100, PRO-RD-1DL-160 | -105d | 6d | Unskilled Labor [64 h]; Traffic signs, ground mounted, Sheet Aluminum, (breakaway) Single post IPE, with all accessories [14.93] | 9,467.5 | RD |  |
|  | 3 | **Finishes for Infrastructure Networks** |  | 2027-04-25 | 2027-07-05 |  |  |  |  |  |  |  |
|  | 11 | **Storm Drainage Network** |  | 2027-06-01 | 2027-07-05 |  |  |  |  |  |  |  |
|  | TF | **Testing and Finishes** |  | 2027-06-01 | 2027-07-05 |  |  |  |  |  |  |  |
| CO-SD-ML-TF-120 |  | Testing Work for Pipes of Storm Drainage Network for Alignment-RD-02 | 6d | 2027-06-01 | 2027-06-07 | CO-SD-ML-190, CO-SD-PO-110-P1, CO-SD-PO-110-P2, CO-SD-ML-TF-130 | -106d | 4d | Skilled Labor [48 h]; Plumber [48 h]; Depth Between 0m to 1.50m [148.66]; Depth Between 1.50m to 2.50m [68.58]; Depth Between 2.50m to 3.50m; Depth > 3.50m; Depth Between 0m to 1.50m [11.94]; Depth Between 1.50m to 2.50m [162.19]; Depth Between 2.50m to 3.50m [104.46]; Depth > 3.50m [4.48]; Depth Between 0m to 1.50m; Depth Between 1.50m to 2.50m [35.55]; Depth Between 3.50m to 4.50m; Depth > 4.50m; Depth Between 1.50m to 2.50m; Depth Between 3.50m to 4.50m [17.91]; Depth > 4.50m [4.78]; GRP Pipe, 900mm diameter with Depth Between 3.51m to 4.50m | 186,241.16 | SD |  |
| CO-SD-CB-TF-220 |  | Catch Basin Internal Finishes (Benching ) for Storm Drainage Network for Alignment-RD-02 | 6d | 2027-06-13 | 2027-06-19 | CO-SD-MH-300, PRO-SD-1DL-140, PRO-R25-SD-DL-140, PRO-R25-RD-DL-110, PRO-RD-1DL-110, CO-EW-220, CO-SD-ML-190, CO-SW-ML-190, CO-SW-MH-300, CO-PW-ML-190, CO-PW-VC-280, CO-IR-ML-230, CO-TSE-ML-280, CO-MV-ML-330, CO-SL-LP-430, CO-SL-CL-330, ENG-MS-RD-A-20, ENG-MS-RD-A-30, ENG-MS-RD-A-40, PRO-R25-RD-DL-100, CON-LV-HC-180, CON-LV-ML-180, ENG-MS-RD-A-10, ENG-SH-RD-A-100, ENG-SH-RD-A-110, MS-CS-RD SS, PRO-RD-1DL-100, MS-MM-130, MS-MM-140, CO-TE-DW-200, CO-PW-FH-220, CO-TE-MH-220, CON-LV-DP-180, CO-SD-CB-230 | -116d | 0d | Skilled Labor [144 h]; Unskilled Labor [288 h]; Single Catch Basin 1000mm x 1000mm [9.85]; Double Catch Basin 1200mm x 2300mm | 50,769.38 | SD |  |
| CO-SD-MH-TF-250 |  | Testing Works for Manholes of Storm Drainage Network for Alignment-RD-02 | 6d | 2027-06-13 | 2027-06-19 | PRO-SD-1DL-140, PRO-R25-SD-DL-140, PRO-R25-RD-DL-110, PRO-RD-1DL-110, CO-EW-220, CO-SD-ML-190, CO-SD-CB-230, CO-SW-ML-190, CO-SW-MH-300, CO-PW-ML-190, CO-PW-VC-280, CO-IR-ML-230, CO-TSE-ML-280, CO-MV-ML-330, CO-SL-LP-430, CO-SL-CL-330, ENG-MS-RD-A-20, ENG-MS-RD-A-30, ENG-MS-RD-A-40, PRO-R25-RD-DL-100, CON-LV-HC-180, CON-LV-ML-180, ENG-MS-RD-A-10, ENG-SH-RD-A-100, ENG-SH-RD-A-110, MS-CS-RD SS, PRO-RD-1DL-100, MS-MM-130, MS-MM-140, CO-TE-DW-200, CO-PW-FH-220, CO-TE-MH-220, CON-LV-DP-180, CO-SD-ML-TF-130, CO-SD-MH-TF-210, CO-SD-MH-220, PRO-SD-1DL-100, CO-SD-MH-200, PRO-R25-SD-DL-100, CO-SD-MH-190, ENG-MT-SD-ML-A-100, MS-CS-SD SS, CO-EW-230, ENG-MS-SD-ML-A-110, ENG-MT-SD-ML-A-110, ENG-SH-SD-ML-A-110, CO-SD-MH-180, CO-SD-MH-260, PRO-R25-RD-DL-170, PRO-RD-1DL-130, CO-TE-MH-190, CO-TE-DW-160, CO-SL-CL-300, CO-SL-LP-380, CON-LV-HC-150, CON-LV-ML-150, CO-MV-ML-300, CO-IR-ML-180, CO-PW-FH-190, CO-PW-VC-250, CO-PW-ML-160, CO-TSE-ML-230, CO-SW-ML-160, CO-SW-MH-250, CO-SD-CB-200, CO-SD-ML-160, CO-EW-210_R, CO-SL-LP-520, CO-RD-PB-150 SS, CO-IR-TF-210, CO-TE-CTV-210, CO-SD-ML-220, CO-PW-ML-220, CO-PW-VC-310, CO-TSE-ML-330, CO-MV-ML-360, CO-SL-LP-480, CO-SL-CL-360, CON-LV-HC-210, CON-LV-ML-210, CO-TE-DW-240, CO-PW-FH-250, CO-TE-MH-250, CO-RD-PB-140, CO-IR-ML-380, CO-SD-ML-130, PRO-R25-SD-DL-110, PRO-R25-SD-DL-130, PRO-SD-1DL-130, PRO-SD-1DL-120, ENG-MT-SD-CB-A-110, ENG-SH-SD-CB-A-110, ENG-MS-SD-CB-A-110, PRO-SW-1DL-110 SS, ENG-MT-SW-ML-A-100, ENG-SH-SW-ML-A-110, MS-CS-SW SS, ENG-MS-SW-ML-A-110, PRO-SW-1DL-100, ENG-MT-SW-ML-A-110, PRO-LV-DP-1DL-100, PRO-LV-DP-DL-100, CON-LV-DP-120, CON-LV-DP-190, CON-LV-DP-110, ENG-SH-MSN-A-120, ENG-SH-CTV-A-110, ENG-MS-CTV-A-110, ENG-MT-CTV-A-100, PRO-CTV-1DL-100, MS-CS-TE SS, CO-TE-MH-160, CO-TE-CTV-110, CO-SD-MH-300, CO-SD-ML-TF-120 | -102d | 14d | Skilled Labor [48 h]; Plumber [48 h]; MH depth 1.5 - 2.5m [1.49]; MH depth 2.5 - 3.5m [1.49]; MH depth 3.5 - 4.5m [0.75]; MH depth > 4.50m; MH depth 2.5 -3.5m; MH depth > 3.50m | 38,265.06 | SD | CO-R26.S11-SD-210 |
| CO-SD-CB-TF-200 |  | Testing Works for Catch Basins of Storm Drainage Network for Alignment-RD-02 | 6d | 2027-06-20 | 2027-06-26 | CO-SD-CB-230, CO-SD-ML-TF-120, CO-SD-CB-TF-220 | -116d | 0d | Skilled Labor [48 h]; Plumber [48 h]; Single Catch Basin 1000mm x 1000mm [6.57]; Double Catch Basin 1200mm x 2300mm | 33,846.25 | SD |  |
| CO-SD-CB-TF-210 |  | Install Catch Basin Cover Works for External Finishes of Storm Drainage Network for Alignment-RD-02 | 8d | 2027-06-27 | 2027-07-05 | PRO-R25-RD-DL-110, PRO-RD-1DL-110, CO-EW-220, CO-SD-ML-190, CO-SD-MH-300, CO-SW-ML-190, CO-SW-MH-300, CO-PW-ML-190, CO-PW-VC-280, CO-IR-ML-230, CO-TSE-ML-280, CO-MV-ML-330, CO-SL-LP-430, CO-SL-CL-330, ENG-MS-RD-A-20, ENG-MS-RD-A-30, ENG-MS-RD-A-40, PRO-R25-RD-DL-100, CON-LV-HC-180, CON-LV-ML-180, ENG-MS-RD-A-10, ENG-SH-RD-A-100, ENG-SH-RD-A-110, MS-CS-RD SS, PRO-RD-1DL-100, MS-MM-130, MS-MM-140, CO-TE-DW-200, CO-PW-FH-220, CO-TE-MH-220, CON-LV-DP-180, CO-SD-CB-TF-220, PRO-SD-1DL-150, PRO-R25-SD-DL-150, CO-SD-CB-230, CO-SD-CB-TF-200 | -116d | 0d | Skilled Labor [64 h]; Unskilled Labor [128 h]; Single Catch Basin 1000mm x 1000mm [9.85]; Double Catch Basin 1200mm x 2300mm | 50,769.38 | SD |  |
|  | 10 | **Sewage Network** |  | 2027-04-29 | 2027-05-25 |  |  |  |  |  |  |  |
|  | TF | **Testing and Finishes** |  | 2027-04-29 | 2027-05-25 |  |  |  |  |  |  |  |
| CO-SW-TF-270 |  | Final Testing For Main Line of Sewage Network for Alignment-RD-02 | 18d | 2027-04-29 | 2027-05-25 | PRO-SW-1DL-110, PRO-R25-SW-DL-110, ENG-MT-SW-ML-A-100, ENG-SH-SW-ML-A-110, MS-CS-SW SS, CO-EW-200, MS-MM-130, MS-MM-140, ENG-MS-SW-ML-A-110, CO-SD-MH-220, CO-SD-ML-130, PRO-R25-SD-DL-110, PRO-R25-SD-DL-130, PRO-SD-1DL-130, PRO-SD-1DL-120, ENG-MT-SD-CB-A-110, ENG-SH-SD-CB-A-110, ENG-MS-SD-CB-A-110, MS-CS-SD SS, PRO-SW-1DL-100, PRO-R25-SW-DL-100, ENG-MT-SW-ML-A-110, PRO-SD-1DL-140, PRO-R25-SD-DL-140, CO-SD-MH-260, PRO-R25-RD-DL-170, PRO-RD-1DL-130, PRO-R25-RD-DL-100, PRO-RD-1DL-100, MS-CS-RD SS, ENG-SH-RD-A-100, ENG-SH-RD-A-110, ENG-MS-RD-A-30, ENG-MS-RD-A-20, ENG-MS-RD-A-10, ENG-MS-RD-A-40, CO-TE-MH-190, CO-TE-DW-160, CO-SL-CL-300, CO-SL-LP-380, CON-LV-HC-150, CON-LV-ML-150, CO-MV-ML-300, CO-IR-ML-180, CO-PW-FH-190, CO-PW-VC-250, CO-PW-ML-160, CO-TSE-ML-230, CO-SW-ML-160, CO-SW-MH-250, CO-SD-CB-200, CO-SD-ML-160, CO-EW-210_R, CO-SL-LP-520, PRO-SW-1DL-110 SS, CO-EW-230, PRO-SD-1DL-100, CO-SD-MH-200, PRO-R25-SD-DL-100, CO-SD-MH-190, ENG-MT-SD-ML-A-100, ENG-MS-SD-ML-A-110, ENG-MT-SD-ML-A-110, ENG-SH-SD-ML-A-110, CO-SD-MH-180, CO-SD-ML-220, CO-SW-ML-190 | -81d | 29d | Skilled Labor [48 h]; Plumber [48 h]; Depth Between 0m to 1.50m [18.81]; Depth Between 1.50m to 2.50m [31.87]; Depth > 2.50m [1.04]; Depth Between 0m to 1.50m [6.79]; Depth Between 1.50m to 2.50m [62.69]; Depth Between 2.50m to 3.50m [80.45]; Depth Between 3.50m to 4.50m; Depth Between 4.50m to 5.50m; Depth > 5.50m; HDPE Force Main (PE 100, SDR 11, PN 16 bar) DN 160 mm diameter, in trenches depth: 0- 1.5m; HDPE Force Main (PE 100, SDR 11, PN 16 bar) DN 160 mm diameter, in trenches depth: 1.51- 2.5m; Air valves with dia 50 mm; Gate valves Dia 50 mm; Air valve chamber (1000x 1000 mm) | 45,443.01 | SW |  |
| CO-SW-TF-290 |  | Testing Works for Main Line Manholes of Sewage Network for Alignment-RD-02 | 18d | 2027-04-29 | 2027-05-25 | CO-SW-ML-190, PRO-SW-1DL-110, PRO-R25-SW-DL-110, ENG-MT-SW-ML-A-100, ENG-SH-SW-ML-A-110, MS-CS-SW SS, CO-EW-200, MS-MM-130, MS-MM-140, ENG-MS-SW-ML-A-110, CO-SD-MH-220, CO-SD-ML-130, PRO-R25-SD-DL-110, PRO-R25-SD-DL-130, PRO-SD-1DL-130, PRO-SD-1DL-120, ENG-MT-SD-CB-A-110, ENG-SH-SD-CB-A-110, ENG-MS-SD-CB-A-110, MS-CS-SD SS, PRO-SW-1DL-100, PRO-R25-SW-DL-100, ENG-MT-SW-ML-A-110, PRO-SD-1DL-140, PRO-R25-SD-DL-140, CO-SD-MH-260, PRO-R25-RD-DL-170, PRO-RD-1DL-130, PRO-R25-RD-DL-100, PRO-RD-1DL-100, MS-CS-RD SS, ENG-SH-RD-A-100, ENG-SH-RD-A-110, ENG-MS-RD-A-30, ENG-MS-RD-A-20, ENG-MS-RD-A-10, ENG-MS-RD-A-40, CO-TE-MH-190, CO-TE-DW-160, CO-SL-CL-300, CO-SL-LP-380, CON-LV-HC-150, CON-LV-ML-150, CO-MV-ML-300, CO-IR-ML-180, CO-PW-FH-190, CO-PW-VC-250, CO-PW-ML-160, CO-TSE-ML-230, CO-SW-ML-160, CO-SW-MH-250, CO-SD-CB-200, CO-SD-ML-160, CO-EW-210_R, CO-SL-LP-520, PRO-SW-1DL-110 SS, CO-EW-230, PRO-SD-1DL-100, CO-SD-MH-200, PRO-R25-SD-DL-100, CO-SD-MH-190, ENG-MT-SD-ML-A-100, ENG-MS-SD-ML-A-110, ENG-MT-SD-ML-A-110, ENG-SH-SD-ML-A-110, CO-SD-MH-180, CO-SD-ML-220, CO-SW-MH-300 | -81d | 29d | Skilled Labor [48 h]; Plumber [48 h]; Depth: 0 - 1.5m [1.12]; Depth: 1.51 - 2.5m [2.99]; Depth: 2.51 - 3.5m [1.49]; Depth: 3.51 - 4.5m [0.37]; Depth: 4.51 - 5.5m; Depth > 5.50m | 31,603.7 | SW | CO-R26.S11-SW-210 |
|  | 9 | **Potable Water Network** |  | 2027-04-26 | 2027-06-05 |  |  |  |  |  |  |  |
|  | TF | **Testing and Finishes** |  | 2027-04-26 | 2027-06-05 |  |  |  |  |  |  |  |
| CO-PW-TF-170 |  | Fire Hydrant Finishies (S.Box + Safety + Marker Post ) of Potable Water Network for Alignment-RD-02 | 14d | 2027-04-26 | 2027-05-11 | CO-PW-FH-220, ENG-MT-PW-TF-A-100, CO-PW-TF-200 SS | -90d | 0d | Skilled Labor [48 h]; Unskilled Labor [96 h]; Plumber [96 h]; 3-outlet fire hydrant (2 x 2.5 inch and 1 x 4.5 inch) in the form of a separate dry vacuum cylinder, complete according to drawings. [2.09] | 15,739.7 | PW |  |
| CO-PW-TF-180 |  | Final Finishes works and Covers for Valves and Valve Chambers for Alignment-RD-02 | 8d | 2027-05-12 | 2027-05-26 | CO-PW-VC-280, ENG-MT-PW-TF-A-100, PRO-PW-1DL-130, PRO-R25-PW-DL-130, CO-PW-TF-170, CO-PW-TF-210 | -90d | 0d | Unskilled Labor [48 h]; Plumber [48 h]; Depth Between 0m to 1.50m; Depth Between 1.50m to 2.50m; Depth > 2.50m; Depth Between 0m to 1.50m [32.66]; Depth Between 1.50m to 2.50m [47.58]; Depth Between 0m to 1.50m [18.66]; Depth Between 1.50m to 2.50m [3.73]; Depth > 2.50m [1.69]; Depth Between 0m to 1.50m [31.64]; Depth Between 1.50m to 2.50m [105.22]; Gate valves Dia 50 mm; Gate valves Dia 100 mm [2.69]; Gate valves Dia 150 mm [4.48]; Gate valves Dia 250 mm [1.19]; Air valves with Dia 50 mm; Washout valve Dia 100 mm [0.3]; Wash out chamber (2500x 2500mm) [0.3]; Air valve chamber (1000x 1000 mm); Flow meter chamber (1500x 2500 mm); Flow meter dia 100 mm | 58,300.95 | PW |  |
| CO-PW-TF-160 |  | Testing of Potable Water Network for Alignment-RD-02 | 8d | 2027-05-27 | 2027-06-05 | ENG-MT-IR-ML-A-110, PRO-IR-1DL-110, PRO-R25-IR-DL-110, PRO-IR-1DL-100, CO-PW-ML-110, PRO-R25-IR-DL-100, ENG-SH-IR-ML-A-110, ENG-MS-IR-ML-A-110, ENG-MT-IR-ML-A-100, CO-PW-ML-100, MS-CS-IR SS, CO-EW-200, MS-MM-130, MS-MM-140, CO-IR-ML-170, CO-IR-ML-160, CO-EW-240, CO-IR-ML-150, CO-SW-MH-250, CO-SW-MH-240, CO-SW-MH-230, PRO-SW-1DL-110, PRO-R25-SW-DL-110, CO-SW-MH-220, ENG-MT-SW-ML-A-100, ENG-SH-SW-ML-A-110, MS-CS-SW SS, ENG-MS-SW-ML-A-110, CO-SD-MH-380, CO-SD-ML-250, CO-SW-MH-210, CO-SD-CB-200, PRO-R25-SD-DL-110, PRO-R25-SD-DL-130, PRO-SD-1DL-130, PRO-SD-1DL-120, CO-SD-CB-190, ENG-MT-SD-CB-A-110, ENG-SH-SD-CB-A-110, ENG-MS-SD-CB-A-110, MS-CS-SD SS, CO-SD-CB-180, CO-SW-ML-160, PRO-SW-1DL-100, PRO-R25-SW-DL-100, CO-SW-ML-150, ENG-MT-SW-ML-A-110, CO-SW-ML-140, CO-PW-ML-190, CO-PW-TF-180, CO-PW-TF-190, CO-IR-ML-240, CO-IR-ML-190 | -90d | 20d | Unskilled Labor [48 h]; Plumber [48 h]; Depth Between 0m to 1.50m; Depth Between 1.50m to 2.50m; Depth > 2.50m; Depth Between 0m to 1.50m [26.12]; Depth Between 1.50m to 2.50m [38.06]; Depth Between 0m to 1.50m [14.93]; Depth Between 1.50m to 2.50m [2.99]; Depth > 2.50m [1.49]; Depth Between 0m to 1.50m [25.31]; Depth Between 1.50m to 2.50m [84.18] | 28,290.59 | PW |  |

| ID | WBS | Activity | Duration | Start | Finish | Predecessors | Total float | Free float | Resources | Cost | 01- Network | Activity ID N |
| --- | --- | --- | --- | --- | --- | --- | --- | --- | --- | --- | --- | --- |
|  | 13 | **Irrigation Network** |  | 2027-05-08 | 2027-05-11 |  |  |  |  |  |  |  |
|  | TF | **Testing and Finishes** |  | 2027-05-08 | 2027-05-11 |  |  |  |  |  |  |  |
| CO-IR-TF-180 |  | Final Testing (pressure tests) of Irrigation Network for Alignment-RD-02 | 4d | 2027-05-08 | 2027-05-11 | CO-PW-TF-110, CO-PW-TF-130, ENG-MT-IR-ML-A-110, PRO-IR-1DL-110, PRO-R25-IR-DL-110, PRO-IR-1DL-100, CO-PW-ML-110, PRO-R25-IR-DL-100, ENG-SH-IR-ML-A-110, ENG-MS-IR-ML-A-110, ENG-MT-IR-ML-A-100, CO-PW-ML-100, MS-CS-IR SS, CO-EW-200, MS-MM-130, MS-MM-140, CO-IR-ML-240, CO-IR-TF-210 | -74d | 0d | Skilled Labor [48 h]; Plumber [48 h]; pipe line O.D 32 mm PN 10, in depth 0 to 1.5 m [246.27]; pipe line O.D 40 mm PN 10, in depth 0 to 1.5 m [223.88]; pipe line O.D 50 mm PN 10, in depth 0 to 1.5 m [67.16] | 13,843.5 | IR |  |
|  | 1 | **Treated Sewage Effluent (Tse)** |  | 2027-05-29 | 2027-06-03 |  |  |  |  |  |  |  |
|  | TF | **Testing and Finishes** |  | 2027-05-29 | 2027-06-03 |  |  |  |  |  |  |  |
| CO-TSE-TF-190 |  | Final Testing (pressure tests) of Treated Sewage Effluent (Tse) for Alignment-RD-02 | 6d | 2027-05-29 | 2027-06-03 | CO-TSE-ML-280, CO-TSE-TF-200 | -89d | 0d | Skilled Labor [48 h]; Plumber [48 h]; Depth Between 0m to 1.50m; Depth Between 1.50m to 2.50m; Depth > 2.50m; Depth Between 0m to 1.50m [19.48]; Depth Between 1.50m to 2.50m [18.96]; Depth > 2.50m [5.97]; Depth Between 0m to 1.50m [289.75]; Depth Between 1.50m to 2.50m [372.45]; Depth Between 0m to 1.50m [25.91]; Depth Between 1.50m to 2.50m [26.57] | 77,686.3 | TSE |  |
|  | 14 | **Medium Voltage Network** |  | 2027-04-25 | 2027-05-01 |  |  |  |  |  |  |  |
|  | TT | **Termination and Testing Works** |  | 2027-04-25 | 2027-05-01 |  |  |  |  |  |  |  |
| CO-MV-TF-240 |  | Testing and Termination Works of Medium Voltage Network for Alignment-RD-02 | 6d | 2027-04-25 | 2027-05-01 | CO-MV-ML-330, CO-MV-TF-250 | -86d | 0d | Skilled Labor [48 h]; Electrician [48 h]; Duct bank for (33) cables; Duct bank for (21) cables; Duct bank for (15) cables [7.16]; HV Cable Road Crossing [0.96] | 5,492.06 | MV |  |
|  | 6 | **Low Voltage Network** |  | 2027-05-11 | 2027-05-26 |  |  |  |  |  |  |  |
|  | TT | **Termination and Testing Works** |  | 2027-05-11 | 2027-05-26 |  |  |  |  |  |  |  |
| CON-LV-TT-150 |  | Testing and Termination Works for Distribution Pillars Units of Low Voltage Network for Alignment-RD-02 | 4d | 2027-05-11 | 2027-05-20 | CON-LV-TT-110, CO-MV-TF-250, PRO-LV-DP-1DL-100, PRO-LV-DP-DL-100, CON-LV-DP-120, CON-LV-DP-190, CON-LV-DP-110, PRO-LV-TT-1DL-100, PRO-LV-TT-DL-100, CON-LV-DP-180 | -81d | 0d | Skilled Labor [32 h]; Electrician [32 h]; Supply and installation of KWH meter mounting frame including concrete block for installation of KWH meter according to the standards and specifications of SEC. [0.9] | 1,075.97 | LV |  |
| CON-LV-TT-140 |  | Testing and Termination Works for Substation Low Voltage Panel Boards of Low Voltage Network for Alignment-RD-02 | 4d | 2027-05-23 | 2027-05-26 | CON-LV-TT-150, PRO-LV-TT-1DL-100, PRO-LV-TT-DL-100, CON-LV-HC-180, CON-LV-ML-180 | -82d | 0d | Skilled Labor [96 h]; Electrician [96 h]; 4C-300mm2 CU/XLPE / PVC ARMORED CABLE [6.27]; 4C-240mm2 CU/XLPE / PVC ARMORED CABLE [3.58]; 4C-185mm2 CU/XLPE / PVC ARMORED CABLE [3.58]; 4C-50mm2 CU/XLPE / PVC ARMORED CABLE [13.43]; 4C-16mm2 CU/XLPE / PVC ARMORED CABLE [309.4]; 4C-16MM2 CU/XLPE / PVC CABLE [124.93]; 1Cx150sq.mm2,Cu, PVC wire [6.27]; 1Cx120sq.mm2,Cu, PVC wire [8.06]; 1Cx95sq.mm,Cu, PVC wire [3.58]; 1Cx70sq.mm2,Cu, PVC wire [1.79]; 1Cx25sq.mm2,Cu, PVC wire [8.06]; 1Cx16sq.mm2,Cu, PVC wire [309.4]; 1Cx10sq.mm2,Cu, PVC wire [2.69] | 28,180.67 | LV |  |
|  | 1 | **Earthing System Works** |  | 2027-05-22 | 2027-05-23 |  |  |  |  |  |  |  |
| CON-LV-ES-120 |  | Earthing System Works for Distribution Pillars Units of Low Voltage Network for Alignment-RD-02 | 2d | 2027-05-22 | 2027-05-23 | CON-LV-ES-100, PRO-LV-DP-1DL-100, PRO-LV-DP-DL-100, CON-LV-DP-120, CON-LV-DP-190, CON-LV-DP-110, PRO-LV-TT-1DL-100, PRO-LV-TT-DL-100, CON-LV-TT-110, CO-MV-TF-250, CON-LV-TT-150, PRO-LV-DP-1DL-110, PRO-LV-DP-DL-120, CON-LV-DP-180 | -79d | 3d | Skilled Labor [16 h]; Electrician [16 h]; Supply and installation of KWH meter mounting frame including concrete block for installation of KWH meter according to the standards and specifications of SEC. [0.45] | 537.99 | LV |  |
|  | 12 | **Street Lighting Network** |  | 2027-05-24 | 2027-06-10 |  |  |  |  |  |  |  |
|  | TR | **Termination and Testing Works** |  | 2027-05-24 | 2027-06-10 |  |  |  |  |  |  |  |
| CO-SL-LP-420 |  | Installation Works for Lighting Fixtures With Drop Wire of Street Lighting Network for Alignment-RD-02 | 2d | 2027-05-24 | 2027-05-25 | CO-TE-CTV-210, CO-TE-CTV-110, CO-SL-DB-340 SS, CO-SL-LP-430, ENG-MT-SL-A-120, PRO-R25-SL-DL-140 | -95d | 0d | Unskilled Labor [48 h]; Electrician [48 h]; Man Left [48 h]; Street Lighting( LED) Luminaire of Output ? 20,965 lumen complete with control gear and lamp, (129.1) WATT. [52.24] | 20,509.65 | SL |  |
| CO-SL-TF-440 |  | Termination Works For Panel Board Cables of Street Lighting Network for Alignment-RD-02 | 6d | 2027-06-01 | 2027-06-07 | CO-SL-LP-470, CO-SL-ES-290, CO-SL-LP-370, CO-SL-ES-250, PRO-R25-SL-DL-160 SS, CO-SL-LP-380, CO-SL-CL-300, ENG-MT-SL-DB-A-100, MS-CS-SL SS, CO-EW-210_R, MS-MM-130, MS-MM-140, CO-SL-LP-580, CO-SL-ES-330, PRO-R25-SL-DL-160, CO-SL-LP-570, CO-SL-CL-420, CO-EW-200, CO-SL-LP-480, CO-SL-CL-360, CO-EW-230, CO-SL-DB-340, CO-SL-LP-420, PRO-R25-SL-DL-170 | -92d | 18d | Unskilled Labor [48 h]; Electrician [48 h]; Street Lighting panels LCP (01) [0.3] | 4,726.11 | SL |  |
| CO-SL-TF-450 |  | Testing Works for Lighting Poles of Street Lighting Network for Alignment-RD-02 | 2d | 2027-06-09 | 2027-06-10 | CO-SL-DB-340, CO-SL-LP-420, CO-SL-ES-270, PRO-R25-SL-DL-130, CO-SL-TF-490 SS | -95d | 15d | Unskilled Labor [48 h]; Electrician [48 h]; Lighting poles with 1 arm, height of (12) meters, including the power distribution box, cables, and RCC foundation. [7.84]; Lighting poles with 2 arms, height of (12) meters, including the power distribution box, cables, and RCC foundation. | 18,879.63 | SL | CO-R26.S11-SL-200 |
| CO-SL-TF-460 |  | Testing Works For Panel Board Cables of Street Lighting Network for Alignment-RD-02 | 2d | 2027-06-09 | 2027-06-10 | CO-SL-LP-470, CO-SL-ES-290, CO-SL-LP-370, CO-SL-ES-250, PRO-R25-SL-DL-160 SS, CO-SL-LP-380, CO-SL-CL-300, ENG-MT-SL-DB-A-100, MS-CS-SL SS, CO-EW-210_R, MS-MM-130, MS-MM-140, CO-SL-LP-580, CO-SL-ES-330, PRO-R25-SL-DL-160, CO-SL-LP-570, CO-SL-CL-420, CO-EW-200, CO-SL-LP-480, CO-SL-CL-360, CO-EW-230, CO-SL-DB-340, CO-SL-LP-420, CO-SL-ES-270 | -95d | 15d | Unskilled Labor [48 h]; Electrician [48 h]; Street Lighting panels LCP (01) [0.15] | 2,363.05 | SL | CO-R25-SL-TF-380 |
|  | ES | **Earthing System Works** |  | 2027-05-26 | 2027-06-08 |  |  |  |  |  |  |  |
| CO-SL-ES-260 |  | Install Earthing System Works for Lighting Poles of Street Lighting Network for Alignment-RD-02 | 6d | 2027-05-26 | 2027-06-01 | CO-SL-LP-420, ENG-MT-SL-ES-A-100, PRO-R25-SL-DL-150, CO-SL-ES-280 | -95d | 0d | Unskilled Labor [96 h]; Electrician [48 h]; JCB [48 h]; Including earthing of lighting poles, masts, feeder pillars, unit substations and LV feeders. [24.63] | 2,834.53 | SL |  |
| CO-SL-ES-270 |  | Install Earthing System Works for Lighting Panel Boards of Street Lighting Network for Alignment-RD-02 | 6d | 2027-06-02 | 2027-06-08 | CO-SL-ES-260, PRO-R25-SL-DL-150, CO-SL-ES-290 | -95d | 0d | Unskilled Labor [96 h]; Electrician [48 h]; JCB [48 h]; Including earthing of lighting poles, masts, feeder pillars, unit substations and LV feeders. [24.63] | 2,834.53 | SL |  |

| ID | WBS | Activity | Duration | Start | Finish | Predecessors | Total float | Free float | Resources | Cost | 01- Network | Activity ID N |
| --- | --- | --- | --- | --- | --- | --- | --- | --- | --- | --- | --- | --- |
|  | 3 | **Telecom and Light Current Network** |  | 2027-05-13 | 2027-05-25 |  |  |  |  |  |  |  |
|  | 1 | **Testing and Finishes** |  | 2027-05-13 | 2027-05-25 |  |  |  |  |  |  |  |
| CO-TE-CTV-TF-220 |  | Testing and Interface modules with Telecom for Alignment-RD-02 | 3d | 2027-05-13 | 2027-05-22 | CO-TE-CTV-180, CO-TE-CTV-210, CO-TE-CTV-110, CO-TE-CTV-TF-260, CO-TE-CTV-TF-340 | -81d | 0d | Skilled Labor [48 h]; Electrician [48 h]; 2-ways ducts, 32mm diameter [85.67]; 2x3-ways ducts, 50mm diameter [271.64]; 8-ways ducts, 6 x 160mm & 2 x 100mm [20.37]; 2 PVC ducts 150x200 mm (60mm diameter) [14.93]; 4 PVC ducts 600x150 mm (60mm diameter) [14.93]; 8 PVC ducts 1000x300 mm (60mm diameter) [14.93]; 6 PVC ducts 600x800 mm (60mm diameter) [29.85]; Manhole Type 3 (1200 x 1200 x 2000) [2.61]; Manhole Type 1 (800 x 600 x 1200) [1.12] | 39,249.14 | CTV |  |
| CO-TE-CTV-TF-350 |  | Testing and Interface modules with CCTV, Telephone, MSN and Access Control for Alignment-RD-02 | 3d | 2027-05-23 | 2027-05-25 | CO-TE-CTV-180, CO-TE-CTV-210, CO-TE-CTV-110, CO-TE-CTV-TF-260, CO-TE-CTV-TF-340, CO-TE-CTV-TF-220 | -81d | 0d | Skilled Labor [48 h]; Electrician [48 h]; NVR Server with RAID (5, 6 or 10) to record all cameras storage 80TB with all hardware / software / licenses etc. [0.12]; VMS Server with RAID (5, 6 or 10) complete Hardware / Software with one Color Laser Printer and all associated accessories for central management. [0.12]; Licenses for Cameras, Workstations and Keyboards [0.06]; Work Station (MMI with two monitors each, for Monitoring for CCTV & ACS) [0.06]; Keyboard with joystick for CCTV with all accessories as per specification [0.06]; Pole mounted IP( PoE) Fixed camera, 5MP,IP 66, IR illumination, 3-8mm varifocal, auto iris lens type [2.39]; Wall mounted IP( PoE) Fixed camera, 5MP,IP 66, IR illumination, 3-8mm varifocal, auto iris lens type [2.93]; 5MP Dome camera ceiling Mounted IP (PoE) indoor [1.01]; 5MP PTZ Multi Sensor Camera IP(PoE) 360 Degree View Outdoor with accessories (IP 66) [0.42]; 8 Port Industrial PoE Switch 10/100BaseT (0 deg to +70 deg. Celsius) [0.66]; Filed Equipment cabinet (FEC), with fan and ventilation, NEMEX 4X ,door, minimum size (600x600x400mm), the cabinet/enclosure includes industrial switch and UPS. [0.66]; IP Phone Communication server (hot standby) 50 Port equipped, Gateway, Gatekeeper, H.323, SIP, redundant Power etc. [0.18]; IP Phone Voice gateway [0.06]; Voice IP Phone [0.06]; NMS Server for IP phone and NETWORK Elements [0.06]; NMS Workstation [0.06]; Firm Ware, software & licenses [0.06]; Data Cable [0.06]; Power Cable [0.06]; Layer 3, 24 Port non-PoE switch10/1000BaseT/LX (-40 deg to +70 deg. Celsius), stack module and associated accessories for utility Telecom Server room [0.12]; Layer 2, 24 Port non-PoE switch10/1000BaseT (-40 deg to +70 deg. Celsius), stack module and associated accessories for utility Telecom Server and Security Guard house room [0.36]; Network Management System Server [0.12]; Network Management System workstation [0.06]; 42U rack dimension (W x H x L) 800 x 2000 x 1000 mm [0.12]; 12U rack dimension (W x H x L) 600 x 625 x 600 mm [0.06]; 06C Optical Fiber SM [108.66]; 48C Optical Fiber SM [346.27]; 48 Core Splice Closure [0.42]; Optical fiber patch cord 5m [1.43]; Data Cable (STP CAT 6A) [616.12]; 3C Power Cable armored 1.5mm2 [616.12]; 3C Power Cable armored 2.5 mm2 [616.12]; UTP CAT6A Patch Cord 1m/3m/5m [1.37]; Access Control Unit [0.3]; Access Card Reader [0.3]; Magnetic Lock [0.3]; Break Glass [0.24]; Exit Push button [0.3]; Door Sensor [0.3]; Biometrics Reader [0.48]; Smart Card Printer [0.06]; Card Issue Work Station [0.06]; Photographic Camera with stand [0.06]; Interface modules with CCTV, Fire and other systems [0.06]; 1-ways ducts, 6 x 50mm diameter [30.45]; 6 PVC ducts 150x200 mm (60mm diameter) [6.87] | 126,017.83 | CTV |  |
|  | 3 | **Alignment-RD-03-1** |  | 2026-11-09 | 2027-05-25 |  |  |  |  |  |  |  |
|  | EW | **Earthworks** |  | 2026-11-09 | 2026-11-22 |  |  |  |  |  |  |  |
|  | EW | **Earthworks** |  | 2026-11-09 | 2026-11-22 |  |  |  |  |  |  |  |
| CO-EW-200 |  | Excavation and Backfilling Works Upto Design Level for Earthworks for Alignment-RD-03-1 | 12d | 2026-11-09 | 2026-11-22 | MS-CS-PS SS, MOB-30, MOB-20, MOB-80, MOB-40, MOB-50, MOB-60, MOB-10, MOB-70, PRE-CON-MDC-10, PRE-CON-MDC-20, PRE-CON-MDC-30, PRE-CON-MDC-40, PRE-CON-MDC-50, PRE-CON-MDC-60, PRE-CON-MDC-70, PRE-CON-MDC-80, MS-MM-100, MS-MM-130, MS-MM-140, MS-MM-150 | -115d | 0d | Skilled Labor [288 h]; Unskilled Labor [288 h]; Dozer [288 h]; Water Tanker [288 h]; Excavations (including Roads , Plots and Pond) [1481]; Embankments to the Site and Roads (including Roads , Plots and Pond) [25200] | 829,054.84 | FE |  |
|  | SD | **Storm Drainage Network** |  | 2026-11-23 | 2026-12-30 |  |  |  |  |  |  |  |
|  | MH | **Manholes** |  | 2026-11-23 | 2026-12-30 |  |  |  |  |  |  |  |
| CO-SD-MH-180 |  | Trench Excavation and Bedding Works for Manholes of Storm Drainage Network for Alignment-RD-03-1 | 10d | 2026-11-23 | 2026-12-03 | ENG-MT-SD-ML-A-100, MS-CS-SD SS, CO-EW-200, ENG-MS-SD-ML-A-110, ENG-MT-SD-ML-A-110, ENG-SH-SD-ML-A-110, MS-MM-130, MS-MM-140 | -112d | 0d | Skilled Labor [24 h]; Unskilled Labor [24 h]; Excavator [24 h]; MH depth 1.5 - 2.5m [0.07]; MH depth 2.5 - 3.5m [0.15]; MH depth 3.5 - 4.5m [0.07]; MH depth > 4.50m; MH depth 2.5 -3.5m; MH depth > 3.50m | 3,242.95 | SD | CO-R26.S11-SD-180 |
| CO-SD-MH-190 |  | Install RC Footing Works for Manholes of Storm Drainage Network for Alignment-RD-03-1 | 3d | 2026-12-05 | 2026-12-07 | CO-SD-MH-180, PRO-R25-SD-DL-100 FF, PRO-SD-1DL-100 | -112d | 0d | Carpenter [48 h]; Steel fixer [48 h]; MH depth 1.5 - 2.5m [0.37]; MH depth 2.5 - 3.5m [0.75]; MH depth 3.5 - 4.5m [0.37]; MH depth > 4.50m; MH depth 2.5 -3.5m; MH depth > 3.50m | 16,214.74 | SD | CO-R26.S11-SD-190 |
| CO-SD-MH-200 |  | Install RC Wall Rings & Slab Works for Manholes of Storm Drainage Network for Alignment-RD-03-1 | 10d | 2026-12-08 | 2026-12-19 | CO-SD-MH-190, PRO-SD-1DL-100 | -112d | 0d | Carpenter [48 h]; Steel fixer [48 h]; MH depth 1.5 - 2.5m [0.45]; MH depth 2.5 - 3.5m [0.9]; MH depth 3.5 - 4.5m [0.45]; MH depth > 4.50m; MH depth 2.5 -3.5m; MH depth > 3.50m | 19,457.69 | SD | CO-R26.S11-SD-200 |
| CO-SD-MH-220 |  | Backfilling Works for Manholes of Storm Drainage Network for Alignment-RD-03-1 | 10d | 2026-12-20 | 2026-12-30 | CO-SD-MH-200 | -112d | 0d | Skilled Labor [48 h]; Water Tanker [48 h]; Loader [48 h]; MH depth 1.5 - 2.5m [0.22]; MH depth 2.5 - 3.5m [0.45]; MH depth 3.5 - 4.5m [0.22]; MH depth > 4.50m; MH depth 2.5 -3.5m; MH depth > 3.50m | 9,728.84 | SD | CO-R26.S11-SD-220 |
|  | ML | **Main Line Sections** |  | 2026-12-20 | 2026-12-30 |  |  |  |  |  |  |  |
| CO-SD-ML-100 |  | Trench Excavation and Bedding Works for Main Lines of Storm Drainage Network for Alignment-RD-03-1 | 3d | 2026-12-20 | 2026-12-22 | MS-CS-SD FF, CO-EW-200, ENG-SH-SD-ML-A-110, ENG-MS-SD-ML-A-110, ENG-MT-SD-ML-A-110, MS-CS-SD SS, MS-MM-130, MS-MM-140, CO-SD-MH-200, CO-SD-MH-180 SS, CO-SD-MH-180 FF | -112d | 0d | Skilled Labor [24 h]; Unskilled Labor [24 h]; Excavator [24 h]; Depth Between 0m to 1.50m; Depth Between 1.50m to 2.50m; Depth Between 2.50m to 3.50m; Depth > 3.50m; Depth Between 1.50m to 2.50m [30.15]; Depth Between 3.50m to 4.50m; Depth > 4.50m; GRP Pipe, 900mm diameter with Depth Between 3.51m to 4.50m | 9,195.85 | SD |  |
| CO-SD-ML-120 |  | Pipes Laying Works for Main Lines of Storm Drainage Network for Alignment-RD-03-1 | 3d | 2026-12-23 | 2026-12-26 | CO-SD-ML-100, PRO-R25-SD-DL-120 FF, PRO-SD-1DL-110, CO-SD-MH-200 | -112d | 0d | Skilled Labor [48 h]; Unskilled Labor [24 h]; Plumber [24 h]; Excavator [24 h]; Depth Between 0m to 1.50m; Depth Between 1.50m to 2.50m; Depth Between 2.50m to 3.50m; Depth > 3.50m; Depth Between 1.50m to 2.50m [150.73]; Depth Between 3.50m to 4.50m; Depth > 4.50m; GRP Pipe, 900mm diameter with Depth Between 3.51m to 4.50m | 45,974.69 | SD |  |
| CO-SD-ML-130 |  | Trench Backfilling and Compaction Works for Main Lines of Storm Drainage Network for Alignment-RD-03-1 | 4d | 2026-12-27 | 2026-12-30 | CO-SD-ML-120, CO-SD-MH-220 FF | -112d | 0d | Skilled Labor [24 h]; Water Tanker [24 h]; Loader [24 h]; Compactor [24 h]; Depth Between 0m to 1.50m; Depth Between 1.50m to 2.50m; Depth Between 2.50m to 3.50m; Depth > 3.50m; Depth Between 1.50m to 2.50m [60.28]; Depth Between 3.50m to 4.50m; Depth > 4.50m; GRP Pipe, 900mm diameter with Depth Between 3.51m to 4.50m | 18,387.14 | SD |  |
|  | CB | **Catch Basin Sections** |  |  |  |  |  |  |  |  |  |  |
|  | SW | **Sewage Network** |  |  |  |  |  |  |  |  |  |  |
|  | 1 | **Manholes** |  |  |  |  |  |  |  |  |  |  |
|  | ML | **Main Line Sections** |  |  |  |  |  |  |  |  |  |  |
|  | TSE | **Treated Sewage Effluent (Tse)** |  | 2026-12-31 | 2027-05-13 |  |  |  |  |  |  |  |
| CO-TSE-ML-150 |  | Trench Excavation and Bedding Works for Main Lines of Treated Sewage Effluent (Tse) for Alignment-RD-03-1 | 4d | 2026-12-31 | 2027-01-04 | PRO-SW-1DL-110, PRO-R25-SW-DL-110, ENG-MT-SW-ML-A-100, ENG-SH-SW-ML-A-110, MS-CS-SW SS, ENG-MS-SW-ML-A-110, CO-SD-MH-220, CO-SD-ML-130, PRO-R25-SD-DL-110, PRO-R25-SD-DL-130, PRO-SD-1DL-130, PRO-SD-1DL-120, ENG-MT-SD-CB-A-110, ENG-SH-SD-CB-A-110, ENG-MS-SD-CB-A-110, MS-CS-SD SS, PRO-SW-1DL-100, PRO-R25-SW-DL-100, ENG-MT-SW-ML-A-110, MS-CS-TSE FF, ENG-SH-TSE-ML-A-120, ENG-MS-TSE-ML-A-120, ENG-MT-IR-ML-A-120, MS-CS-TSE SS, CO-EW-200, MS-MM-130, MS-MM-140 | -92d | 3d | Skilled Labor [32 h]; Unskilled Labor [32 h]; Excavator [32 h]; Depth Between 0m to 1.50m [1.49]; Depth Between 1.50m to 2.50m [0.75]; Depth > 2.50m [0.45]; Depth Between 0m to 1.50m [1.3]; Depth Between 1.50m to 2.50m; Depth > 2.50m; Depth Between 0m to 1.50m [22.3]; Depth Between 1.50m to 2.50m [15.27]; Depth > 2.50m [5.6]; Depth Between 0m to 1.50m | 4,681.4 | TSE |  |
| CO-TSE-ML-160 |  | Pipes Laying Works for Main Lines of Treated Sewage Effluent (Tse) for Alignment-RD-03-1 | 4d | 2027-01-09 | 2027-01-12 | CO-TSE-ML-150, PRO-TSE-1DL-120, PRO-R25-TSE-DL-120 | -95d | 0d | Skilled Labor [64 h]; Unskilled Labor [32 h]; Plumber [32 h]; Excavator [32 h]; Depth Between 0m to 1.50m [7.46]; Depth Between 1.50m to 2.50m [3.73]; Depth > 2.50m [1.34]; Depth Between 0m to 1.50m [6.48]; Depth Between 1.50m to 2.50m; Depth > 2.50m; Depth Between 0m to 1.50m [111.46]; Depth Between 1.50m to 2.50m [76.34]; Depth > 2.50m [16.79]; Depth Between 0m to 1.50m | 21,975.26 | TSE |  |
| CO-TSE-ML-170 |  | Installation Works for Main Line Valves of Treated Sewage Effluent (Tse) for Alignment-RD-03-1 | 6d | 2027-01-13 | 2027-01-19 | CO-TSE-ML-160 | -95d | 0d | Skilled Labor [160 h]; Unskilled Labor [320 h]; Plumber [320 h]; Gate valves dia 50 mm [0.22]; Gate valves dia 100 mm [1.27]; Gate valves dia 150 mm [0.37]; Gate valves dia 200 mm [0.37]; Air valves with dia 50 mm [0.07]; Washout valve dia 100 mm [0.15]; Wash out chamber (2500x 2500mm) [0.15]; Air valve chamber (1000x 1000 mm) [0.07]; Flow meter chamber (1500x 3000 mm) [0.07]; Flow meter dia 150 mm [0.07] | 11,899.45 | TSE |  |
| CO-TSE-ML-190 |  | Installation Works for Valve and Washout Chambers of Treated Sewage Effluent (Tse) for Alignment-RD-03-1 | 6d | 2027-01-20 | 2027-01-26 | CO-TSE-ML-170 | -95d | 0d | Skilled Labor [80 h]; Unskilled Labor [160 h]; Plumber [160 h]; Gate valves dia 50 mm [4.25]; Gate valves dia 100 mm [24.1]; Gate valves dia 150 mm [7.09]; Gate valves dia 200 mm [7.09]; Air valves with dia 50 mm [1.42]; Washout valve dia 100 mm [2.84]; Wash out chamber (2500x 2500mm) [2.84]; Air valve chamber (1000x 1000 mm) [1.42]; Flow meter chamber (1500x 3000 mm) [1.42]; Flow meter dia 150 mm [1.42] | 226,089.46 | TSE |  |
| CO-TSE-ML-180 |  | Trench Backfilling and Compaction Works for Treated Sewage Effluent (Tse) for Alignment-RD-03-1 | 5d | 2027-01-27 | 2027-02-01 | CO-TSE-ML-190 | -95d | 0d | Skilled Labor [40 h]; Water Tanker [40 h]; Loader [40 h]; Compactor [40 h]; Depth Between 0m to 1.50m [2.99]; Depth Between 1.50m to 2.50m [1.49]; Depth > 2.50m [0.6]; Depth Between 0m to 1.50m [2.58]; Depth Between 1.50m to 2.50m; Depth > 2.50m; Depth Between 0m to 1.50m [44.58]; Depth Between 1.50m to 2.50m [30.54]; Depth > 2.50m [7.46]; Depth Between 0m to 1.50m | 8,884.37 | TSE |  |

| ID | WBS | Activity | Duration | Start | Finish | Predecessors | Total float | Free float | Resources | Cost | 01- Network | Activity ID N |
| --- | --- | --- | --- | --- | --- | --- | --- | --- | --- | --- | --- | --- |
|  | TA | **Treated Sewage Effluent (Tse) Storage Tank** |  | 2027-05-08 | 2027-05-13 |  |  |  |  |  |  |  |
| CO-TSE-TF-180 |  | Installation of Storage Tank of Treated Sewage Effluent (Tse) for Alignment-RD-03-1 | 6d | 2027-05-08 | 2027-05-13 | CO-PW-TF-130, CO-TSE-ML-180 | -89d | 0d | Skilled Labor [48 h]; Excavator [48 h]; Glass Fused Bolted (GLS) 1500 m3 Tank with associated accessories & manufacturer recommendation for the foundation [1.49] | 606,603.51 | TSE |  |
|  | PW | **Potable Water Network** |  | 2027-02-02 | 2027-05-06 |  |  |  |  |  |  |  |
|  | ML | **Main Line Sections** |  | 2027-02-02 | 2027-02-21 |  |  |  |  |  |  |  |
| CO-PW-ML-100 |  | Trench Excavation and Bedding Works for Main Lines of Potable Water Network for Alignment-RD-03-1 | 5d | 2027-02-02 | 2027-02-07 | PRO-SW-1DL-110, PRO-R25-SW-DL-110, ENG-MT-SW-ML-A-100, ENG-SH-SW-ML-A-110, MS-CS-SW SS, ENG-MS-SW-ML-A-110, CO-SD-MH-220, CO-SD-ML-130, PRO-R25-SD-DL-110, PRO-R25-SD-DL-130, PRO-SD-1DL-130, PRO-SD-1DL-120, ENG-MT-SD-CB-A-110, ENG-SH-SD-CB-A-110, ENG-MS-SD-CB-A-110, MS-CS-SD SS, PRO-SW-1DL-100, PRO-R25-SW-DL-100, ENG-MT-SW-ML-A-110, MS-CS-PW FF, ENG-SH-PW-ML-A-110, ENG-MS-PW-ML-A-110, ENG-MT-PW-ML-A-100, MS-CS-PW SS, CO-EW-200, MS-MM-130, MS-MM-140, CO-TSE-ML-180, CO-PW-ML-140 | -95d | 0d | Skilled Labor [40 h]; Unskilled Labor [40 h]; Excavator [40 h]; Depth Between 0m to 1.50m [0.9]; Depth Between 1.50m to 2.50m [0.9]; Depth > 2.50m [0.45]; Depth Between 0m to 1.50m [2.61]; Depth Between 1.50m to 2.50m [3.81]; Depth > 2.50m; Depth Between 0m to 1.50m; Depth Between 1.50m to 2.50m; Depth Between 0m to 1.50m [2.54]; Depth Between 1.50m to 2.50m [8.42] | 2,765.05 | PW |  |
| CO-PW-ML-110 |  | Pipes Laying and accessories for Main Lines of Potable Water Network for Alignment-RD-03-1 | 5d | 2027-02-08 | 2027-02-13 | CO-PW-ML-100, PRO-PW-1DL-100, PRO-R25-PW-DL-100 | -95d | 0d | Skilled Labor [80 h]; Unskilled Labor [40 h]; Plumber [40 h]; JCB [40 h]; Depth Between 0m to 1.50m [2.24]; Depth Between 1.50m to 2.50m [2.24]; Depth > 2.50m [0.67]; Depth Between 0m to 1.50m [6.54]; Depth Between 1.50m to 2.50m [9.52]; Depth > 2.50m; Depth Between 0m to 1.50m; Depth Between 1.50m to 2.50m; Depth Between 0m to 1.50m [6.33]; Depth Between 1.50m to 2.50m [21.04] | 6,877.57 | PW |  |
| CO-PW-ML-130 |  | Trench Backfilling and Compaction Works for Main Lines of Potable Water Network for Alignment-RD-03-1 | 7d | 2027-02-14 | 2027-02-21 | CO-PW-ML-110 | -95d | 0d | Skilled Labor [40 h]; Water Tanker [40 h]; Loader [40 h]; Compactor [40 h]; Depth Between 0m to 1.50m [1.79]; Depth Between 1.50m to 2.50m [1.79]; Depth > 2.50m [0.6]; Depth Between 0m to 1.50m [5.22]; Depth Between 1.50m to 2.50m [7.61]; Depth > 2.50m; Depth Between 0m to 1.50m; Depth Between 1.50m to 2.50m; Depth Between 0m to 1.50m [5.06]; Depth Between 1.50m to 2.50m [16.84] | 5,505.06 | PW |  |
|  | VC | **Valve Chamber** |  | 2027-02-04 | 2027-02-27 |  |  |  |  |  |  |  |
| CO-PW-VC-170 |  | Excavation Works for Main Line Valves and Valve Chambers of Potable Water Network for Alignment-RD-03-1 | 3d | 2027-02-04 | 2027-02-07 | ENG-MT-PW-ML-A-110, MS-CS-PW SS, CO-PW-ML-100 SS, CO-PW-ML-100 FF, MS-MM-130, MS-MM-140 | -81d | 0d | Unskilled Labor [24 h]; Excavator [24 h]; Gate valves Dia 50 mm [0.07]; Gate valves Dia 100 mm; Gate valves Dia 150 mm; Gate valves Dia 250 mm; Air valves with Dia 50 mm; Washout valve Dia 100 mm; Wash out chamber (2500x 2500mm); Air valve chamber (1000x 1000 mm); Flow meter chamber (1500x 2500 mm) [0.07]; Flow meter dia 100 mm [0.07] | 2,544.39 | PW | CO-R26.S11-PW-170 |
| CO-PW-VC180 |  | Installation of Valve Chambers of Potable Water Network for Alignment-RD-03-1 | 3d | 2027-02-08 | 2027-02-10 | CO-PW-VC-170, PRO-R25-PW-DL-120 | -81d | 8d | Skilled Labor [24 h]; Unskilled Labor [48 h]; Plumber [48 h]; Gate valves Dia 50 mm [0.78]; Gate valves Dia 100 mm; Gate valves Dia 150 mm; Gate valves Dia 250 mm; Air valves with Dia 50 mm; Washout valve Dia 100 mm; Wash out chamber (2500x 2500mm); Air valve chamber (1000x 1000 mm); Flow meter chamber (1500x 2500 mm) [0.78]; Flow meter dia 100 mm [0.78] | 26,461.62 | PW | CO-R26.S11-PW-180 |
| CO-PW-VC-190 |  | Installation Works for Valves of Potable Water Network for Alignment-RD-03-1 | 3d | 2027-02-21 | 2027-02-23 | CO-PW-VC180, PRO-PW-1DL-110, PRO-R25-PW-DL-110 | -89d | 0d | Skilled Labor [24 h]; Unskilled Labor [48 h]; Plumber [48 h]; Gate valves Dia 50 mm [0.19]; Gate valves Dia 100 mm; Gate valves Dia 150 mm; Gate valves Dia 250 mm; Air valves with Dia 50 mm; Washout valve Dia 100 mm; Wash out chamber (2500x 2500mm); Air valve chamber (1000x 1000 mm); Flow meter chamber (1500x 2500 mm) [0.19]; Flow meter dia 100 mm [0.19] | 6,615.41 | PW | CO-R26.S11-PW-190 |
| CO-PW-VC-220 |  | Backfilling Works for Main Line Valves and Valve Chambers of Potable Water Network for Alignment-RD-03-1 | 3d | 2027-02-24 | 2027-02-27 | CO-PW-VC-190, CO-PW-ML-130 FF | -89d | 0d | Unskilled Labor [24 h]; Excavator [24 h]; Gate valves Dia 50 mm [0.15]; Gate valves Dia 100 mm; Gate valves Dia 150 mm; Gate valves Dia 250 mm; Air valves with Dia 50 mm; Washout valve Dia 100 mm; Wash out chamber (2500x 2500mm); Air valve chamber (1000x 1000 mm); Flow meter chamber (1500x 2500 mm) [0.15]; Flow meter dia 100 mm [0.15] | 5,088.77 | PW | CO-R26.S11-PW-220 |
|  | FH | **Fire Hydrant** |  | 2027-02-08 | 2027-02-27 |  |  |  |  |  |  |  |
| CO-PW-FH-140 |  | Excavation Works for Fire Hydrants of Potable Water Network for Alignment-RD-03-1 | 2d | 2027-02-08 | 2027-02-09 | CO-PW-VC-170, ENG-SH-PW-FH-A-110, ENG-MT-PW-FH-A-100, MS-CS-PW SS, CO-EW-200, MS-MM-130, MS-MM-140 | -78d | 3d | Skilled Labor [16 h]; Excavator [16 h]; 3-outlet fire hydrant (2 x 2.5 inch and 1 x 4.5 inch) in the form of a separate dry vacuum cylinder, complete according to drawings. [0.07] | 562.13 | PW |  |
| CO-PW-FH-150 |  | Installation Works for Fire Hydrant of Potable Water Network for Alignment-RD-03-1 | 2d | 2027-02-14 | 2027-02-15 | CO-PW-FH-140, PRO-PW-1DL-120, CO-PW-ML-110 | -81d | 8d | Skilled Labor [16 h]; Unskilled Labor [32 h]; Plumber [32 h]; 3-outlet fire hydrant (2 x 2.5 inch and 1 x 4.5 inch) in the form of a separate dry vacuum cylinder, complete according to drawings. [0.97] | 7,307.72 | PW |  |
| CO-PW-FH-160 |  | Trench Backfilling and Compaction Works for Fire Hydrants of Potable Water Network for Alignment-RD-03-1 | 2d | 2027-02-25 | 2027-02-27 | CO-PW-FH-150, CO-PW-VC-220 FF | -89d | 3d | Skilled Labor [16 h]; Water Tanker [16 h]; Loader [16 h]; Compactor [16 h]; 3-outlet fire hydrant (2 x 2.5 inch and 1 x 4.5 inch) in the form of a separate dry vacuum cylinder, complete according to drawings. [0.15] | 1,124.26 | PW |  |
|  | TA | **Potable Water Network Storage Tank** |  | 2027-05-01 | 2027-05-06 |  |  |  |  |  |  |  |
| CO-PW-TF-130 |  | Installation of Storage Tank of Potable Water Network for Alignment-RD-03-1 | 6d | 2027-05-01 | 2027-05-06 | CO-PW-ML-130, CO-PW-TF-100 | -89d | 0d | Skilled Labor [48 h]; Unskilled Labor [96 h]; Plumber [96 h]; Glass Fused Bolted (GLS) 1500 m3 Tank with associated accessories & manufacturer recommendation for the foundation [1.49] | 606,603.51 | PW |  |
|  | IR | **Irrigation Network** |  |  |  |  |  |  |  |  |  |  |
|  | ML | **Main Line Pipes** |  |  |  |  |  |  |  |  |  |  |
|  | LV | **Low Voltage Network** |  | 2027-02-22 | 2027-04-24 |  |  |  |  |  |  |  |
|  | MLVC | **Main Low Voltage Cables Works ( Cable 300 MM )** |  | 2027-02-22 | 2027-03-18 |  |  |  |  |  |  |  |
| CON-LV-ML-100 |  | Trench Excavation and Bedding Works for Main Cable of Low Voltage Network for Alignment-RD-03-1 | 8d | 2027-02-22 | 2027-03-02 | CO-SD-ML-130, PRO-R25-SD-DL-110, PRO-R25-SD-DL-130, PRO-SD-1DL-130, PRO-SD-1DL-120, ENG-MT-SD-CB-A-110, ENG-SH-SD-CB-A-110, ENG-MS-SD-CB-A-110, MS-CS-SD SS, PRO-SW-1DL-110, PRO-R25-SW-DL-110, ENG-MT-SW-ML-A-100, ENG-SH-SW-ML-A-110, MS-CS-SW SS, ENG-MS-SW-ML-A-110, CO-SD-MH-220, PRO-SW-1DL-100, PRO-R25-SW-DL-100, ENG-MT-SW-ML-A-110, MS-CS-LV FF, CO-PW-ML-130, ENG-SH-LV-A-120, ENG-MS-MV-A-120, MS-CS-LV SS, CO-EW-200, MS-MM-130, MS-MM-140 | -95d | 0d | Skilled Labor [32 h]; Unskilled Labor [32 h]; Excavator [32 h]; Road crossing ducts, 2 ways (2 x 150mm HDPE) [16.39]; Road crossing ducts, 2 ways (2 x 110mm UPVC) [6.51]; Road crossing ducts, 3 ways (3 x 110mm UPVC) [2.16] | 3,647.98 | LV |  |
| CON-LV-ML-110 |  | Cable Laying Works for Main Cable of Low Voltage Network for Alignment-RD-03-1 | 7d | 2027-03-03 | 2027-03-14 | CON-LV-ML-100, PRO-LV-ML-1DL-100, PRO-LV-ML-DL-100 | -95d | 0d | Skilled Labor [32 h]; Unskilled Labor [128 h]; Electrician [32 h]; JCB [32 h]; 4C-300mm2 CU/XLPE / PVC ARMORED CABLE [2.3]; 4C-240mm2 CU/XLPE / PVC ARMORED CABLE [1.31]; 4C-185mm2 CU/XLPE / PVC ARMORED CABLE [1.31]; 4C-50mm2 CU/XLPE / PVC ARMORED CABLE [4.93]; 4C-16mm2 CU/XLPE / PVC ARMORED CABLE [113.45]; 4C-16MM2 CU/XLPE / PVC CABLE [45.81]; 1Cx150sq.mm2,Cu, PVC wire [2.3]; 1Cx120sq.mm2,Cu, PVC wire [2.96]; 1Cx95sq.mm,Cu, PVC wire [1.31]; 1Cx70sq.mm2,Cu, PVC wire [0.66]; 1Cx25sq.mm2,Cu, PVC wire [2.96]; 1Cx16sq.mm2,Cu, PVC wire [113.45]; 1Cx10sq.mm2,Cu, PVC wire [0.99] | 10,332.91 | LV |  |
| CON-LV-ML-120 |  | Trench Backfilling and Compaction Works for Main Cable of Low Voltage Network for Alignment-RD-03-1 | 4d | 2027-03-15 | 2027-03-18 | CON-LV-ML-110 | -92d | 16d | Skilled Labor [64 h]; Water Tanker [32 h]; JCB [32 h]; 4C-300mm2 CU/XLPE / PVC ARMORED CABLE [1.04]; 4C-240mm2 CU/XLPE / PVC ARMORED CABLE [0.6]; 4C-185mm2 CU/XLPE / PVC ARMORED CABLE [0.6]; 4C-50mm2 CU/XLPE / PVC ARMORED CABLE [2.24]; 4C-16mm2 CU/XLPE / PVC ARMORED CABLE [51.57]; 4C-16MM2 CU/XLPE / PVC CABLE [20.82]; 1Cx150sq.mm2,Cu, PVC wire [1.04]; 1Cx120sq.mm2,Cu, PVC wire [1.34]; 1Cx95sq.mm,Cu, PVC wire [0.6]; 1Cx70sq.mm2,Cu, PVC wire [0.3]; 1Cx25sq.mm2,Cu, PVC wire [1.34]; 1Cx16sq.mm2,Cu, PVC wire [51.57]; 1Cx10sq.mm2,Cu, PVC wire [0.45] | 4,696.78 | LV |  |

| ID | WBS | Activity | Duration | Start | Finish | Predecessors | Total float | Free float | Resources | Cost | 01- Network | Activity ID N |
| --- | --- | --- | --- | --- | --- | --- | --- | --- | --- | --- | --- | --- |
|  | SLVC | **Service Low Voltage Cables Works ( Cable 70 MM )** |  | 2027-03-03 | 2027-04-10 |  |  |  |  |  |  |  |
| CON-LV-HC-100 |  | Trench Excavation and Bedding Works for Service Cable of Low Voltage Network for Alignment-RD-03-1 | 4d | 2027-03-03 | 2027-03-07 | PRO-R25-SD-DL-110, PRO-R25-SD-DL-130, PRO-SD-1DL-130, PRO-SD-1DL-120, ENG-MT-SD-CB-A-110, ENG-SH-SD-CB-A-110, ENG-MS-SD-CB-A-110, MS-CS-SD SS, PRO-SW-1DL-110, PRO-R25-SW-DL-110, ENG-MT-SW-ML-A-100, ENG-SH-SW-ML-A-110, MS-CS-SW SS, ENG-MS-SW-ML-A-110, PRO-SW-1DL-100, PRO-R25-SW-DL-100, ENG-MT-SW-ML-A-110, CON-LV-ML-100, ENG-MS-MV-A-120, MS-CS-LV SS, CO-EW-200, ENG-SH-LV-A-120, MS-MM-130, MS-MM-140, CO-PW-ML-130, CO-PW-VC-220, CO-PW-FH-160, CO-TSE-ML-180, CO-SD-ML-130, CO-SD-MH-220 | -92d | 16d | Skilled Labor [24 h]; Unskilled Labor [24 h]; Excavator [24 h]; Road crossing ducts, 2 ways (2 x 150mm HDPE) [8.19]; Road crossing ducts, 2 ways (2 x 110mm UPVC) [3.25]; Road crossing ducts, 3 ways (3 x 110mm UPVC) [1.07] | 1,822.9 | LV |  |
| CON-LV-HC-110 |  | Cable Laying Works for Service Cable of Low Voltage Network for Alignment-RD-03-1 | 7d | 2027-03-30 | 2027-04-06 | PRO-LV-DP-DL-120, CON-LV-HC-100, CON-LV-ML-110, PRO-LV-HC-1DL-100, PRO-LV-HC-DL-100 | -108d | 0d | Skilled Labor [24 h]; Unskilled Labor [96 h]; Electrician [24 h]; JCB [24 h]; 4C-300mm2 CU/XLPE / PVC ARMORED CABLE [2.3]; 4C-240mm2 CU/XLPE / PVC ARMORED CABLE [1.31]; 4C-185mm2 CU/XLPE / PVC ARMORED CABLE [1.31]; 4C-50mm2 CU/XLPE / PVC ARMORED CABLE [4.93]; 4C-16mm2 CU/XLPE / PVC ARMORED CABLE [113.45]; 4C-16MM2 CU/XLPE / PVC CABLE [45.81]; 1Cx150sq.mm2,Cu, PVC wire [2.3]; 1Cx120sq.mm2,Cu, PVC wire [2.96]; 1Cx95sq.mm,Cu, PVC wire [1.31]; 1Cx70sq.mm2,Cu, PVC wire [0.66]; 1Cx25sq.mm2,Cu, PVC wire [2.96]; 1Cx16sq.mm2,Cu, PVC wire [113.45]; 1Cx10sq.mm2,Cu, PVC wire [0.99] | 10,332.91 | LV |  |
| CON-LV-HC-120 |  | Trench Backfilling and Compaction Works for Service Cable of Low Voltage Network for Alignment-RD-03-1 | 3d | 2027-04-07 | 2027-04-10 | CON-LV-HC-110, CON-LV-ML-120 | -108d | 0d | Skilled Labor [48 h]; Water Tanker [24 h]; JCB [24 h]; 4C-300mm2 CU/XLPE / PVC ARMORED CABLE [1.04]; 4C-240mm2 CU/XLPE / PVC ARMORED CABLE [0.6]; 4C-185mm2 CU/XLPE / PVC ARMORED CABLE [0.6]; 4C-50mm2 CU/XLPE / PVC ARMORED CABLE [2.24]; 4C-16mm2 CU/XLPE / PVC ARMORED CABLE [51.57]; 4C-16MM2 CU/XLPE / PVC CABLE [20.82]; 1Cx150sq.mm2,Cu, PVC wire [1.04]; 1Cx120sq.mm2,Cu, PVC wire [1.34]; 1Cx95sq.mm,Cu, PVC wire [0.6]; 1Cx70sq.mm2,Cu, PVC wire [0.3]; 1Cx25sq.mm2,Cu, PVC wire [1.34]; 1Cx16sq.mm2,Cu, PVC wire [51.57]; 1Cx10sq.mm2,Cu, PVC wire [0.45] | 4,696.78 | LV |  |
|  | DP | **Distribution Pillars Works** |  | 2027-04-11 | 2027-04-24 |  |  |  |  |  |  |  |
| CON-LV-DP-100 |  | Foundation Excavation Works for Distribution Pillars of Low Voltage Network for Alignment-RD-03-1 | 4d | 2027-04-11 | 2027-04-14 | ENG-MS-MV-A-120, MS-CS-LV SS, CO-EW-200, MS-MM-130, MS-MM-140, CON-LV-HC-120 | -108d | 0d | Unskilled Labor [64 h]; Excavator [32 h]; Road crossing ducts, 2 ways (2 x 150mm HDPE) [2.73]; Road crossing ducts, 2 ways (2 x 110mm UPVC) [1.09]; Road crossing ducts, 3 ways (3 x 110mm UPVC) [0.36] | 608.14 | LV |  |
| CON-LV-DP-110 |  | Pouring Plain Concrete For Distribution Pillar Units of Low Voltage Network for Alignment-RD-03-1 | 4d | 2027-04-15 | 2027-04-19 | CON-LV-DP-100 | -108d | 0d | Skilled Labor [32 h]; Mason [32 h]; Carpenter [64 h]; Supply and installation of KWH meter mounting frame including concrete block for installation of KWH meter according to the standards and specifications of SEC. [1.04] | 1,255.3 | LV |  |
| CON-LV-DP-120 |  | Installation Works for Distribution Pillar Units of Low Voltage Network for Alignment-RD-03-1 | 4d | 2027-04-20 | 2027-04-24 | CON-LV-DP-110, PRO-LV-DP-1DL-100, PRO-LV-DP-DL-100 | -108d | 0d | Unskilled Labor [32 h]; Electrician [32 h]; Supply and installation of KWH meter mounting frame including concrete block for installation of KWH meter according to the standards and specifications of SEC. [1.04] | 1,255.3 | LV |  |
|  | SL | **Street Lighting Network** |  | 2027-03-02 | 2027-03-29 |  |  |  |  |  |  |  |
|  | LP | **Lighting Poles Works** |  | 2027-03-02 | 2027-03-24 |  |  |  |  |  |  |  |
| CO-SL-LP-550 |  | Installation Works for Lighting Poles Foundation of Street Lighting Network for Alignment-RD-03-1 | 5d | 2027-03-02 | 2027-03-07 | ENG-SH-SL-A-110, ENG-MS-SL-A-110, ENG-MT-SL-A-100, MS-CS-SL SS, MS-MM-130, MS-MM-140, CO-EW-200, CO-MV-ML-370, PRO-R25-SL-DL-110 | -93d | 1d | Unskilled Labor [80 h]; Excavator [40 h]; Lighting poles with 1 arm, height of (12) meters, including the power distribution box, cables, and RCC foundation. [0.9]; Lighting poles with 2 arms, height of (12) meters, including the power distribution box, cables, and RCC foundation. | 2,157.67 | SL |  |
| CO-SL-LP-560 |  | Installation Works for Lighting Poles of Street Lighting Network for Alignment-RD-03-1 | 5d | 2027-03-13 | 2027-03-17 | CO-SL-LP-550, ENG-MT-SL-A-110, PRO-R25-SL-DL-120 | -94d | 0d | Unskilled Labor [80 h]; Boom Truck [40 h]; Lighting poles with 1 arm, height of (12) meters, including the power distribution box, cables, and RCC foundation. [2.99]; Lighting poles with 2 arms, height of (12) meters, including the power distribution box, cables, and RCC foundation. | 7,192.24 | SL |  |
| CO-SL-LP-570 |  | Backfilling Works for Lighting Poles of Street Lighting Network for Alignment-RD-03-1 | 6d | 2027-03-18 | 2027-03-24 | CO-SL-LP-560 | -90d | 4d | Unskilled Labor [48 h]; Excavator [48 h]; Lighting poles with 1 arm, height of (12) meters, including the power distribution box, cables, and RCC foundation. [0.3]; Lighting poles with 2 arms, height of (12) meters, including the power distribution box, cables, and RCC foundation. | 719.22 | SL | CO-R26.S11-SL-210 |
|  | CW | **Cabling Works** |  | 2027-03-18 | 2027-03-29 |  |  |  |  |  |  |  |
| CO-SL-CL-410 |  | Cable Laying Works for Street Lighting Network for Alignment-RD-03-1 | 5d | 2027-03-18 | 2027-03-23 | ENG-SH-SL-A-110, ENG-MS-SL-A-110, ENG-MT-SL-ML-A-100, PRO-SL-1DL-100, MS-CS-SL SS, MS-MM-130, MS-MM-140, CO-SL-LP-560, CO-SD-MH-220, CO-SD-ML-130, CO-TSE-ML-180, CO-PW-ML-130, CO-PW-VC-220, CO-PW-FH-160, CO-EW-200, PRO-R25-SD-DL-110, PRO-R25-SD-DL-130, PRO-SD-1DL-130, PRO-SD-1DL-120, ENG-MT-SD-CB-A-110, ENG-SH-SD-CB-A-110, ENG-MS-SD-CB-A-110, MS-CS-SD SS, PRO-SW-1DL-110, PRO-R25-SW-DL-110, ENG-MT-SW-ML-A-100, ENG-SH-SW-ML-A-110, MS-CS-SW SS, ENG-MS-SW-ML-A-110, PRO-SW-1DL-100, PRO-R25-SW-DL-100, ENG-MT-SW-ML-A-110, ENG-MT-IR-ML-A-110, PRO-IR-1DL-110, PRO-R25-IR-DL-110, PRO-IR-1DL-100, CO-PW-ML-110, PRO-R25-IR-DL-100, ENG-SH-IR-ML-A-110, ENG-MS-IR-ML-A-110, ENG-MT-IR-ML-A-100, CO-PW-ML-100, MS-CS-IR SS, PRO-R25-SL-DL-100 | -94d | 0d | Skilled Labor [40 h]; Unskilled Labor [80 h]; Electrician [40 h]; JCB [40 h]; Lighting poles with 1 arm, height of (12) meters, including the power distribution box, cables, and RCC foundation. [3.28]; Lighting poles with 2 arms, height of (12) meters, including the power distribution box, cables, and RCC foundation. | 7,911.46 | SL |  |
| CO-SL-CL-420 |  | Trench Backfilling and Compaction Works for Street Lighting Network for Alignment-RD-03-1 | 5d | 2027-03-24 | 2027-03-29 | CO-SL-CL-410, CO-SL-LP-570 FF | -94d | 10d | Skilled Labor [40 h]; Water Tanker [40 h]; Excavator [40 h]; Lighting poles with 1 arm, height of (12) meters, including the power distribution box, cables, and RCC foundation. [2.69]; Lighting poles with 2 arms, height of (12) meters, including the power distribution box, cables, and RCC foundation. | 6,473.02 | SL |  |
|  | DPB | **Distrubution Panel Boards** |  |  |  |  |  |  |  |  |  |  |
|  | TE | **Telecom and Light Current Network** |  | 2027-04-11 | 2027-04-21 |  |  |  |  |  |  |  |
|  | PD | **Ducts Works** |  | 2027-04-11 | 2027-04-19 |  |  |  |  |  |  |  |
| CO-TE-DW-110 |  | Pipes Laying Works for Ducts of Telecom Network for Alignment-RD-03-1 | 4d | 2027-04-11 | 2027-04-14 | ENG-SH-TE-A-110, ENG-MS-TE-A-110, ENG-MT-TE-A-100, PRO-TE-1DL-100, MS-CS-TE SS, MS-MM-130, MS-MM-140, CO-SD-MH-220, CO-SD-ML-130, CO-PW-ML-130, CO-PW-VC-220, CO-PW-FH-160, CON-LV-ML-120, CON-LV-HC-120, CO-EW-200, CO-SL-LP-570, CO-SL-CL-420, PRO-R25-SD-DL-110, PRO-R25-SD-DL-130, PRO-SD-1DL-130, PRO-SD-1DL-120, ENG-MT-SD-CB-A-110, ENG-SH-SD-CB-A-110, ENG-MS-SD-CB-A-110, MS-CS-SD SS, PRO-SW-1DL-110, PRO-R25-SW-DL-110, ENG-MT-SW-ML-A-100, ENG-SH-SW-ML-A-110, MS-CS-SW SS, ENG-MS-SW-ML-A-110, PRO-SW-1DL-100, PRO-R25-SW-DL-100, ENG-MT-SW-ML-A-110, ENG-MT-IR-ML-A-110, PRO-IR-1DL-110, PRO-R25-IR-DL-110, PRO-IR-1DL-100, CO-PW-ML-110, PRO-R25-IR-DL-100, ENG-SH-IR-ML-A-110, ENG-MS-IR-ML-A-110, ENG-MT-IR-ML-A-100, CO-PW-ML-100, MS-CS-IR SS, PRO-R25-SL-DL-160, ENG-MT-SL-DB-A-100, MS-CS-SL SS, PRO-R25-TE-DL-100 | -104d | 0d | Skilled Labor [32 h]; Unskilled Labor [64 h]; Electrician [32 h]; 2-ways ducts, 32mm diameter [87.51]; 2x3-ways ducts, 50mm diameter [277.46]; 8-ways ducts, 6 x 160mm & 2 x 100mm [20.81]; 2 PVC ducts 150x200 mm (60mm diameter); 4 PVC ducts 600x150 mm (60mm diameter); 8 PVC ducts 1000x300 mm (60mm diameter); 6 PVC ducts 600x800 mm (60mm diameter) | 21,205.25 | TE |  |
| CO-TE-DW-130 |  | Trench Backfilling and Compaction Works for Ducts of Telecom Network for Alignment-RD-03-1 | 4d | 2027-04-15 | 2027-04-19 | CO-TE-DW-110, CO-TE-MH-160 FF | -104d | 4d | Unskilled Labor [32 h]; Mason [32 h]; Carpenter [64 h]; 2-ways ducts, 32mm diameter [39.78]; 2x3-ways ducts, 50mm diameter [126.12]; 8-ways ducts, 6 x 160mm & 2 x 100mm [9.46]; 2 PVC ducts 150x200 mm (60mm diameter); 4 PVC ducts 600x150 mm (60mm diameter); 8 PVC ducts 1000x300 mm (60mm diameter); 6 PVC ducts 600x800 mm (60mm diameter) | 9,639.82 | TE |  |
|  | MH | **Manholes Works** |  | 2027-04-11 | 2027-04-17 |  |  |  |  |  |  |  |
| CO-TE-MH-140 |  | Excavation Works for Manholes of Telecom Network for Alignment-RD-03-1 | 2d | 2027-04-11 | 2027-04-12 | ENG-MT-TE-A-100, PRO-TE-1DL-100, CO-SD-MH-220, CO-SD-ML-130, CO-PW-ML-130, CO-PW-VC-220, CO-PW-FH-160, CON-LV-ML-120, CON-LV-HC-120, CO-EW-200, CO-SL-LP-570, PRO-R25-SD-DL-110, PRO-R25-SD-DL-130, PRO-SD-1DL-130, PRO-SD-1DL-120, ENG-MT-SD-CB-A-110, ENG-SH-SD-CB-A-110, ENG-MS-SD-CB-A-110, MS-CS-SD SS, PRO-SW-1DL-110, PRO-R25-SW-DL-110, ENG-MT-SW-ML-A-100, ENG-SH-SW-ML-A-110, MS-CS-SW SS, ENG-MS-SW-ML-A-110, PRO-SW-1DL-100, PRO-R25-SW-DL-100, ENG-MT-SW-ML-A-110, ENG-MT-IR-ML-A-110, PRO-IR-1DL-110, PRO-R25-IR-DL-110, PRO-IR-1DL-100, CO-PW-ML-110, PRO-R25-IR-DL-100, ENG-SH-IR-ML-A-110, ENG-MS-IR-ML-A-110, ENG-MT-IR-ML-A-100, CO-PW-ML-100, MS-CS-IR SS, PRO-R25-SL-DL-160, ENG-MT-SL-DB-A-100, MS-CS-SL SS, MS-CS-TE FF, ENG-SH-TE-A-110, ENG-MS-TE-A-110, ENG-MT-TE-A-110, PRO-TE-1DL-110, MS-CS-TE SS, MS-MM-130, MS-MM-140 | -102d | 0d | Unskilled Labor [32 h]; JCB [16 h]; Manhole Type 3 (1200 x 1200 x 2000) [0.22]; Manhole Type 1 (800 x 600 x 1200) [0.15] | 979.1 | TE |  |
| CO-TE-MH-150 |  | Installation Works for Manholes of Telecom Network for Alignment-RD-03-1 | 2d | 2027-04-13 | 2027-04-14 | CO-TE-MH-140, PRO-R25-TE-DL-110 | -102d | 0d | Unskilled Labor [32 h]; Boom Truck [16 h]; Manhole Type 3 (1200 x 1200 x 2000) [2.46]; Manhole Type 1 (800 x 600 x 1200) [1.64] | 10,770.12 | TE |  |
| CO-TE-MH-160 |  | Backfilling Works for Manholes of Telecom Network for Alignment-RD-03-1 | 2d | 2027-04-15 | 2027-04-17 | CO-TE-MH-150 | -102d | 0d | Unskilled Labor [32 h]; Boom Truck [16 h]; Manhole Type 3 (1200 x 1200 x 2000) [0.67]; Manhole Type 1 (800 x 600 x 1200) [0.45] | 2,937.31 | TE |  |

| ID | WBS | Activity | Duration | Start | Finish | Predecessors | Total float | Free float | Resources | Cost | 01- Network | Activity ID N |
| --- | --- | --- | --- | --- | --- | --- | --- | --- | --- | --- | --- | --- |
|  | DD | **CCTV, Telephone, MSN, ACs System Works** |  | 2027-04-18 | 2027-04-21 |  |  |  |  |  |  |  |
| CO-TE-CTV-110 |  | Installation of CCTV, Telephone, ACS and MSN Systems Cables for Alignment-RD-03-1 | 4d | 2027-04-18 | 2027-04-21 | CO-TE-MH-160, ENG-SH-MSN-A-120, ENG-SH-CTV-A-110, ENG-MS-CTV-A-110, ENG-MT-CTV-A-100, PRO-CTV-1DL-100, MS-CS-TE SS, MS-MM-130, MS-MM-140, PRO-R25-CTV-DL-100 | -81d | 0d | Skilled Labor [32 h]; Unskilled Labor [64 h]; Electrician [32 h]; NVR Server with RAID (5, 6 or 10) to record all cameras storage 80TB with all hardware / software / licenses etc. [0.18]; VMS Server with RAID (5, 6 or 10) complete Hardware / Software with one Color Laser Printer and all associated accessories for central management. [0.18]; Licenses for Cameras, Workstations and Keyboards [0.09]; Work Station (MMI with two monitors each, for Monitoring for CCTV & ACS) [0.09]; Keyboard with joystick for CCTV with all accessories as per specification [0.09]; Pole mounted IP( PoE) Fixed camera, 5MP,IP 66, IR illumination, 3-8mm varifocal, auto iris lens type [3.58]; Wall mounted IP( PoE) Fixed camera, 5MP,IP 66, IR illumination, 3-8mm varifocal, auto iris lens type [4.39]; 5MP Dome camera ceiling Mounted IP (PoE) indoor [1.52]; 5MP PTZ Multi Sensor Camera IP(PoE) 360 Degree View Outdoor with accessories (IP 66) [0.63]; 8 Port Industrial PoE Switch 10/100BaseT (0 deg to +70 deg. Celsius) [0.99]; Filed Equipment cabinet (FEC), with fan and ventilation, NEMEX 4X ,door, minimum size (600x600x400mm), the cabinet/enclosure includes industrial switch and UPS. [0.99]; IP Phone Communication server (hot standby) 50 Port equipped, Gateway, Gatekeeper, H.323, SIP, redundant Power etc. [0.27]; IP Phone Voice gateway [0.09]; Voice IP Phone [0.09]; NMS Server for IP phone and NETWORK Elements [0.09]; NMS Workstation [0.09]; Firm Ware, software & licenses [0.09]; Data Cable [0.09]; Power Cable [0.09]; Layer 3, 24 Port non-PoE switch10/1000BaseT/LX (-40 deg to +70 deg. Celsius), stack module and associated accessories for utility Telecom Server room [0.18]; Layer 2, 24 Port non-PoE switch10/1000BaseT (-40 deg to +70 deg. Celsius), stack module and associated accessories for utility Telecom Server and Security Guard house room [0.54]; Network Management System Server [0.18]; Network Management System workstation [0.09]; 42U rack dimension (W x H x L) 800 x 2000 x 1000 mm [0.18]; 12U rack dimension (W x H x L) 600 x 625 x 600 mm [0.09]; 06C Optical Fiber SM [162.99]; 48C Optical Fiber SM [519.4]; 48 Core Splice Closure [0.63]; Optical fiber patch cord 5m [2.15]; Data Cable (STP CAT 6A) [924.18]; 3C Power Cable armored 1.5mm2 [924.18]; 3C Power Cable armored 2.5 mm2 [924.18]; UTP CAT6A Patch Cord 1m/3m/5m [2.06]; Access Control Unit [0.45]; Access Card Reader [0.45]; Magnetic Lock [0.45]; Break Glass [0.36]; Exit Push button [0.45]; Door Sensor [0.45]; Biometrics Reader [0.72]; Smart Card Printer [0.09]; Card Issue Work Station [0.09]; Photographic Camera with stand [0.09]; Interface modules with CCTV, Fire and other systems [0.09]; 1-ways ducts, 6 x 50mm diameter [45.67]; 6 PVC ducts 150x200 mm (60mm diameter) [10.3] | 189,026.74 | CTV |  |
|  | RD | **Road Works** |  | 2027-04-25 | 2027-05-25 |  |  |  |  |  |  |  |
|  | RD | **Pre-Bituminous Construction** |  | 2027-04-25 | 2027-05-10 |  |  |  |  |  |  |  |
| CO-RD-PB-140 |  | Subgrade Layer for Road Works for Alignment-RD-03-1 | 7d | 2027-04-25 | 2027-05-02 | PRO-R25-SD-DL-110, PRO-R25-SD-DL-130, PRO-SD-1DL-130, PRO-SD-1DL-120, ENG-MT-SD-CB-A-110, ENG-SH-SD-CB-A-110, ENG-MS-SD-CB-A-110, MS-CS-SD SS, PRO-SW-1DL-110, PRO-R25-SW-DL-110, ENG-MT-SW-ML-A-100, ENG-SH-SW-ML-A-110, MS-CS-SW SS, ENG-MS-SW-ML-A-110, PRO-SW-1DL-100, PRO-R25-SW-DL-100, ENG-MT-SW-ML-A-110, ENG-MT-IR-ML-A-110, PRO-IR-1DL-110, PRO-R25-IR-DL-110, PRO-IR-1DL-100, CO-PW-ML-110, PRO-R25-IR-DL-100, ENG-SH-IR-ML-A-110, ENG-MS-IR-ML-A-110, ENG-MT-IR-ML-A-100, CO-PW-ML-100, MS-CS-IR SS, CO-EW-200, CO-SD-ML-130, CO-SD-MH-220, CO-PW-ML-130, CO-PW-VC-220, CO-TSE-ML-180, ENG-MS-RD-A-20, ENG-MS-RD-A-30, ENG-MS-RD-A-40, PRO-R25-RD-DL-100, CON-LV-HC-120, CON-LV-ML-120, ENG-MS-RD-A-10, ENG-SH-RD-A-100, ENG-SH-RD-A-110, MS-CS-RD SS, PRO-RD-1DL-100, MS-MM-130, MS-MM-140, CO-TE-DW-130, CO-PW-FH-160, CO-TE-MH-160, CON-LV-DP-120, CO-SL-CL-420, CO-SL-LP-570 | -108d | 0d | Skilled Labor [24 h]; Unskilled Labor [24 h]; Water Tanker [24 h]; Grader [24 h]; Loader [24 h]; Compactor [24 h]; Subgrade [2050.13] | 65,547.71 | RD |  |
| CO-RD-PB-150 |  | Aggregate Base Course Layer for Road Works for Alignment-RD-03-1 | 7d | 2027-05-03 | 2027-05-10 | CON-LV-ES-100, CO-RD-PB-140, PRO-R25-RD-DL-110, PRO-RD-1DL-110 | -82d | 0d | Skilled Labor [24 h]; Unskilled Labor [24 h]; Water Tanker [24 h]; Grader [24 h]; Loader [24 h]; Compactor [24 h]; Aggregate base course [1025.07] | 68,824.23 | RD |  |
|  | 1 | **Bituminous Construction** |  | 2027-05-03 | 2027-05-06 |  |  |  |  |  |  |  |
| CO-RD-B-160 |  | Bituminous Base Courses Layers for Road Works for Alignment-RD-03-1 | 2d | 2027-05-03 | 2027-05-04 | PRO-R25-RD-DL-160, PRO-R25-RD-DL-160 FF, CO-RD-PB-150 SS, PRO-RD-1DL-120, PRO-RD-1DL-120 FF, PRO-R25-RD-DL-170, PRO-RD-1DL-130 | -82d | 0d | Unskilled Labor [32 h]; Asphalt Cutter [16 h]; Asphalt Paver [16 h]; Bituminous base course (Grading I - Class A), including Prime Coat (MC1) [341.91] | 138,391.81 | RD |  |
| CON-RD-MR-150 |  | Preparation of Asphaltic Wearing Course Layer for Roads Network for Alignment-RD-03-1 | 2d | 2027-05-05 | 2027-05-06 | PRO-RD-1DL-190, PRO-RD-1DL-190 FF, PRO-RD-DL-210, PRO-RD-DL-210 FF, CO-RD-B-160 SS, CO-RD-B-160, CO-RD-B-160 FF, CO-PW-TF-100, CO-PW-TF-100 FF, CO-PW-TF-110, CO-PW-TF-110 FF, CO-PW-TF-120, CO-PW-TF-120 FF, CO-TE-CTV-TF-140, CO-TE-CTV-TF-140 FF, CO-TE-CTV-TF-330 SS, CO-TE-CTV-TF-330, CO-SD-MH-220, CO-SD-MH-220 FF, PRO-SD-1DL-140, PRO-SD-1DL-140 FF, PRO-R25-SD-DL-140, PRO-R25-SD-DL-140 FF, CO-SD-MH-260, CO-SD-MH-260 FF, PRO-R25-RD-DL-170, PRO-R25-RD-DL-170 FF, PRO-RD-1DL-130, PRO-RD-1DL-130 FF, PRO-R25-RD-DL-100, PRO-R25-RD-DL-100 FF, PRO-RD-1DL-100, PRO-RD-1DL-100 FF, MS-MM-140, MS-MM-140 FF, MS-MM-130, MS-MM-130 FF, MS-CS-RD SS, ENG-SH-RD-A-100, ENG-SH-RD-A-100 FF, ENG-SH-RD-A-110, ENG-SH-RD-A-110 FF, ENG-MS-RD-A-30, ENG-MS-RD-A-30 FF, ENG-MS-RD-A-20, ENG-MS-RD-A-20 FF, ENG-MS-RD-A-10, ENG-MS-RD-A-10 FF, ENG-MS-RD-A-40, ENG-MS-RD-A-40 FF, CO-TE-MH-190, CO-TE-MH-190 FF, CO-TE-DW-160, CO-TE-DW-160 FF, CO-SL-CL-300, CO-SL-CL-300 FF, CO-SL-LP-380, CO-SL-LP-380 FF, CON-LV-HC-150, CON-LV-HC-150 FF, CON-LV-ML-150, CON-LV-ML-150 FF, CO-MV-ML-300, CO-MV-ML-300 FF, CO-IR-ML-180, CO-IR-ML-180 FF, CO-PW-FH-190, CO-PW-FH-190 FF, CO-PW-VC-250, CO-PW-VC-250 FF, CO-PW-ML-160, CO-PW-ML-160 FF, CO-TSE-ML-230, CO-TSE-ML-230 FF, CO-SW-ML-160, CO-SW-ML-160 FF, CO-SW-MH-250, CO-SW-MH-250 FF, CO-SD-CB-200, CO-SD-CB-200 FF, CO-SD-ML-160, CO-SD-ML-160 FF, CO-EW-210_R, CO-EW-210_R FF, CO-SL-LP-520, CO-SL-LP-520 FF, CO-SD-ML-130, CO-SD-ML-130 FF, PRO-R25-SD-DL-110, PRO-R25-SD-DL-110 FF, PRO-R25-SD-DL-130, PRO-R25-SD-DL-130 FF, PRO-SD-1DL-130, PRO-SD-1DL-130 FF, PRO-SD-1DL-120, PRO-SD-1DL-120 FF, ENG-MT-SD-CB-A-110, ENG-MT-SD-CB-A-110 FF, ENG-SH-SD-CB-A-110, ENG-SH-SD-CB-A-110 FF, ENG-MS-SD-CB-A-110, ENG-MS-SD-CB-A-110 FF, MS-CS-SD SS, PRO-SW-1DL-110, PRO-SW-1DL-110 FF, PRO-R25-SW-DL-110, PRO-R25-SW-DL-110 FF, ENG-MT-SW-ML-A-100, ENG-MT-SW-ML-A-100 FF, ENG-SH-SW-ML-A-110, ENG-SH-SW-ML-A-110 FF, MS-CS-SW SS, CO-EW-200, CO-EW-200 FF, ENG-MS-SW-ML-A-110, ENG-MS-SW-ML-A-110 FF, PRO-SW-1DL-100, PRO-SW-1DL-100 FF, PRO-R25-SW-DL-100, PRO-R25-SW-DL-100 FF, ENG-MT-SW-ML-A-110, ENG-MT-SW-ML-A-110 FF, ENG-MT-IR-ML-A-110, ENG-MT-IR-ML-A-110 FF, PRO-IR-1DL-110, PRO-IR-1DL-110 FF, PRO-R25-IR-DL-110, PRO-R25-IR-DL-110 FF, PRO-IR-1DL-100, PRO-IR-1DL-100 FF, CO-PW-ML-110, CO-PW-ML-110 FF, PRO-R25-IR-DL-100, PRO-R25-IR-DL-100 FF, ENG-SH-IR-ML-A-110, ENG-SH-IR-ML-A-110 FF, ENG-MS-IR-ML-A-110, ENG-MS-IR-ML-A-110 FF, ENG-MT-IR-ML-A-100, ENG-MT-IR-ML-A-100 FF, CO-PW-ML-100, CO-PW-ML-100 FF, MS-CS-IR SS, PRO-RD-DL-200, PRO-RD-1DL-180 | -79d | 3d | Unskilled Labor [32 h]; Asphalt Cutter [16 h]; Asphalt Paver [16 h]; Bituminous concrete wearing course, (Grading I - Class A), including tack coat (RC2) [341.91] | 139,704.44 | RD |  |
|  | LS | **Pavement Works** |  | 2027-05-05 | 2027-05-25 |  |  |  |  |  |  |  |
| CO-RD-PV-160 |  | Fixing of Curbstone for Sidewalks Pavement for Alignment-RD-03-1 | 5d | 2027-05-05 | 2027-05-10 | ENG-MS-HS-A-10, PRO-R25-RD-DL-130, PRO-RD-1DL-150, CO-RD-B-160 | -82d | 0d | Pavement Labor [160 h]; Bobcat [40 h]; JCB [40 h]; Precast Concrete Curbstone 150X300X900 Type (K1-A) [967.27]; Precast Concrete Curbstone 100X200X500 Type (K4) [379.6]; Precast Concrete Curbstone 150X300X500 Type (K1-B) [83.75]; Precast Concrete Curbstone Type (K1-C) [5.87]; Flush Kerb Type (D) [10.61] | 46,266.93 | RD |  |
| CO-RD-PV-170 |  | Fixing of Interlock Tiles for Sidewalks Pavement for Alignment-RD-03-1 | 8d | 2027-05-11 | 2027-05-25 | CO-RD-PV-160, ENG-MS-HS-A-10, PRO-R25-RD-DL-120, PRO-RD-1DL-140 | -82d | 0d | Pavement Labor [384 h]; Bobcat [64 h]; JCB [64 h]; 60mm thick [672.16]; 80mm thick | 29,655.55 | RD |  |
|  | TS | **Traffic Signs Boards and Roads Marking** |  | 2027-05-11 | 2027-05-23 |  |  |  |  |  |  |  |
| CO-RD-F-RM-180 |  | Application of Road Marking Works For Road Works for Alignment-RD-03-1 | 2d | 2027-05-11 | 2027-05-12 | CO-RD-PV-170 SS, ENG-MS-MRK-A-10, PRO-R25-RD-DL-150, ENG-SH-MRK-A-110, PRO-RD-1DL-170, CO-RD-PV-160, CON-RD-MR-150 | -82d | 0d | Skilled Labor [16 h]; Road Painter [16 h]; Retroreflective Thermoplastic White Traffic lines [85.15]; Retroreflective Thermoplastic Yellow, Traffic lines [128.22]; Precast Concrete Blister Warning Tactile Paver Brown Finish 300*300*60mm [3] | 6,359.71 | RD |  |
| CO-RD-F-TS-120 |  | Installation Works of Traffic Signs Boards For Road Works for Alignment-RD-03-1 | 2d | 2027-05-22 | 2027-05-23 | CO-RD-F-RM-180, ENG-MS-TSB-A-10, PRO-R25-RD-DL-140, ENG-SH-TSB-A-100, PRO-RD-1DL-160 | -84d | 0d | Unskilled Labor [32 h]; Traffic signs, ground mounted, Sheet Aluminum, (breakaway) Single post IPE, with all accessories [7.46] | 4,733.75 | RD |  |
|  | 3 | **Finishes for Infrastructure Networks** |  | 2027-04-22 | 2027-05-23 |  |  |  |  |  |  |  |
|  | 11 | **Storm Drainage Network** |  | 2027-05-01 | 2027-05-06 |  |  |  |  |  |  |  |
|  | TF | **Testing and Finishes** |  | 2027-05-01 | 2027-05-06 |  |  |  |  |  |  |  |
| CO-SD-ML-TF-100 |  | Testing Work for Pipes of Storm Drainage Network for Alignment-RD-03-1 | 3d | 2027-05-01 | 2027-05-03 | CO-SD-MH-220, PRO-SD-1DL-140, PRO-R25-SD-DL-140, CO-SD-MH-260, PRO-R25-RD-DL-170, PRO-RD-1DL-130, PRO-R25-RD-DL-100, PRO-RD-1DL-100, MS-MM-140, MS-MM-130, MS-CS-RD SS, ENG-SH-RD-A-100, ENG-SH-RD-A-110, ENG-MS-RD-A-30, ENG-MS-RD-A-20, ENG-MS-RD-A-10, ENG-MS-RD-A-40, CO-TE-MH-190, CO-TE-DW-160, CO-SL-CL-300, CO-SL-LP-380, CON-LV-HC-150, CON-LV-ML-150, CO-MV-ML-300, CO-IR-ML-180, CO-PW-FH-190, CO-PW-VC-250, CO-PW-ML-160, CO-TSE-ML-230, CO-SW-ML-160, CO-SW-MH-250, CO-SD-CB-200, CO-SD-ML-160, CO-EW-210_R, CO-SL-LP-520, CO-SD-ML-130, CO-SD-PO-110-P1, CO-SD-PO-110-P2 SS | -92d | 0d | Skilled Labor [48 h]; Plumber [48 h]; Depth Between 0m to 1.50m; Depth Between 1.50m to 2.50m; Depth Between 2.50m to 3.50m; Depth > 3.50m; Depth Between 1.50m to 2.50m [60.28]; Depth Between 3.50m to 4.50m; Depth > 4.50m; GRP Pipe, 900mm diameter with Depth Between 3.51m to 4.50m | 18,387.14 | SD |  |
| CO-SD-MH-TF-210 |  | Testing Works for Manholes of Storm Drainage Network for Alignment-RD-03-1 | 3d | 2027-05-04 | 2027-05-06 | PRO-SD-1DL-140, PRO-R25-SD-DL-140, CO-SD-MH-260, PRO-R25-RD-DL-170, PRO-RD-1DL-130, PRO-R25-RD-DL-100, PRO-RD-1DL-100, MS-MM-140, MS-MM-130, MS-CS-RD SS, ENG-SH-RD-A-100, ENG-SH-RD-A-110, ENG-MS-RD-A-30, ENG-MS-RD-A-20, ENG-MS-RD-A-10, ENG-MS-RD-A-40, CO-TE-MH-190, CO-TE-DW-160, CO-SL-CL-300, CO-SL-LP-380, CON-LV-HC-150, CON-LV-ML-150, CO-MV-ML-300, CO-IR-ML-180, CO-PW-FH-190, CO-PW-VC-250, CO-PW-ML-160, CO-TSE-ML-230, CO-SW-ML-160, CO-SW-MH-250, CO-SD-CB-200, CO-SD-ML-160, CO-EW-210_R, CO-SL-LP-520, CO-SD-MH-220, CO-SD-ML-TF-100 | -76d | 16d | Skilled Labor [48 h]; Plumber [48 h]; MH depth 1.5 - 2.5m [0.37]; MH depth 2.5 - 3.5m [0.75]; MH depth 3.5 - 4.5m [0.37]; MH depth > 4.50m; MH depth 2.5 -3.5m; MH depth > 3.50m | 16,214.74 | SD | CO-R26.S11-SD-210 |
|  | 10 | **Sewage Network** |  |  |  |  |  |  |  |  |  |  |
|  | TF | **Testing and Finishes** |  |  |  |  |  |  |  |  |  |  |
|  | 9 | **Potable Water Network** |  | 2027-04-26 | 2027-04-29 |  |  |  |  |  |  |  |
|  | TF | **Testing and Finishes** |  | 2027-04-26 | 2027-04-29 |  |  |  |  |  |  |  |
| CO-PW-TF-100 |  | Final Finishes works and Covers for Valves and Valve Chambers for Alignment-RD-03-1 | 4d | 2027-04-26 | 2027-04-29 | CO-PW-VC-220, ENG-MT-PW-TF-A-100, PRO-PW-1DL-130, PRO-R25-PW-DL-130, CO-PW-TF-120 SS | -89d | 0d | Unskilled Labor [96 h]; Plumber [96 h]; Depth Between 0m to 1.50m [2.24]; Depth Between 1.50m to 2.50m [2.24]; Depth > 2.50m [0.67]; Depth Between 0m to 1.50m [6.54]; Depth Between 1.50m to 2.50m [9.52]; Depth > 2.50m; Depth Between 0m to 1.50m; Depth Between 1.50m to 2.50m; Depth Between 0m to 1.50m [6.33]; Depth Between 1.50m to 2.50m [21.04]; Gate valves Dia 50 mm [0.3]; Gate valves Dia 100 mm; Gate valves Dia 150 mm; Gate valves Dia 250 mm; Air valves with Dia 50 mm; Washout valve Dia 100 mm; Wash out chamber (2500x 2500mm); Air valve chamber (1000x 1000 mm); Flow meter chamber (1500x 2500 mm) [0.3]; Flow meter dia 100 mm [0.3] | 17,055.12 | PW |  |
| CO-PW-TF-110 |  | Testing of Potable Water Network for Alignment-RD-03-1 | 2d | 2027-04-26 | 2027-04-27 | CO-PW-ML-130, CO-PW-TF-100 SS | -75d | 3d | Unskilled Labor [16 h]; Plumber [16 h]; Depth Between 0m to 1.50m [1.79]; Depth Between 1.50m to 2.50m [1.79]; Depth > 2.50m [0.6]; Depth Between 0m to 1.50m [5.22]; Depth Between 1.50m to 2.50m [7.61]; Depth > 2.50m; Depth Between 0m to 1.50m; Depth Between 1.50m to 2.50m; Depth Between 0m to 1.50m [5.06]; Depth Between 1.50m to 2.50m [16.84] | 5,505.06 | PW |  |
| CO-PW-TF-120 |  | Fire Hydrant Finishies (S.Box + Safety + Marker Post ) of Potable Water Network for Alignment-RD-03-1 | 3d | 2027-04-26 | 2027-04-28 | PRO-SW-1DL-110, PRO-R25-SW-DL-110, ENG-MT-SW-ML-A-100, ENG-SH-SW-ML-A-110, MS-CS-SW SS, CO-EW-200, MS-MM-130, MS-MM-140, ENG-MS-SW-ML-A-110, CO-SD-MH-220, CO-SD-ML-130, PRO-R25-SD-DL-110, PRO-R25-SD-DL-130, PRO-SD-1DL-130, PRO-SD-1DL-120, ENG-MT-SD-CB-A-110, ENG-SH-SD-CB-A-110, ENG-MS-SD-CB-A-110, MS-CS-SD SS, PRO-SW-1DL-100, PRO-R25-SW-DL-100, ENG-MT-SW-ML-A-110, PRO-SD-1DL-140, PRO-R25-SD-DL-140, CO-SD-MH-260, PRO-R25-RD-DL-170, PRO-RD-1DL-130, PRO-R25-RD-DL-100, PRO-RD-1DL-100, MS-CS-RD SS, ENG-SH-RD-A-100, ENG-SH-RD-A-110, ENG-MS-RD-A-30, ENG-MS-RD-A-20, ENG-MS-RD-A-10, ENG-MS-RD-A-40, CO-TE-MH-190 SS, CO-TE-DW-160 SS, CO-SL-CL-300, CO-SL-LP-380, CON-LV-HC-150, CON-LV-ML-150, CO-MV-ML-300, CO-IR-ML-180, CO-PW-FH-190, CO-PW-VC-250, CO-PW-ML-160, CO-TSE-ML-230, CO-SW-ML-160, CO-SD-CB-200, CO-SD-ML-160, CO-EW-210_R, CO-SL-LP-520, CO-PW-FH-160, ENG-MT-PW-TF-A-100 | -90d | 0d | Skilled Labor [24 h]; Unskilled Labor [48 h]; Plumber [48 h]; 3-outlet fire hydrant (2 x 2.5 inch and 1 x 4.5 inch) in the form of a separate dry vacuum cylinder, complete according to drawings. [0.3] | 2,248.53 | PW |  |

| ID | WBS | Activity | Duration | Start | Finish | Predecessors | Total float | Free float | Resources | Cost | 01- Network | Activity ID N |
| --- | --- | --- | --- | --- | --- | --- | --- | --- | --- | --- | --- | --- |
|  | 13 | **Irrigation Network** |  |  |  |  |  |  |  |  |  |  |
|  | TF | **Testing and Finishes** |  |  |  |  |  |  |  |  |  |  |
|  | 1 | **Treated Sewage Effluent (Tse)** |  | 2027-05-20 | 2027-05-20 |  |  |  |  |  |  |  |
|  | TF | **Testing and Finishes** |  | 2027-05-20 | 2027-05-20 |  |  |  |  |  |  |  |
| CO-TSE-TF-170 |  | Final Testing (pressure tests) of Treated Sewage Effluent (Tse) for Alignment-RD-03-1 | 1d | 2027-05-20 | 2027-05-20 | CO-TSE-ML-180, CO-PW-TF-130, CO-TSE-TF-180 | -89d | 0d | Skilled Labor [8 h]; Plumber [8 h]; Depth Between 0m to 1.50m [2.99]; Depth Between 1.50m to 2.50m [1.49]; Depth > 2.50m [0.6]; Depth Between 0m to 1.50m [2.58]; Depth Between 1.50m to 2.50m; Depth > 2.50m; Depth Between 0m to 1.50m [44.58]; Depth Between 1.50m to 2.50m [30.54]; Depth > 2.50m [7.46]; Depth Between 0m to 1.50m | 8,884.37 | TSE |  |
|  | 6 | **Low Voltage Network** |  | 2027-04-25 | 2027-04-28 |  |  |  |  |  |  |  |
|  | TT | **Termination and Testing Works** |  | 2027-04-25 | 2027-04-28 |  |  |  |  |  |  |  |
| CON-LV-TT-110 |  | Testing and Termination Works for Distribution Pillars Units of Low Voltage Network for Alignment-RD-03-1 | 2d | 2027-04-25 | 2027-04-26 | PRO-LV-TT-1DL-100, PRO-LV-TT-DL-100, CON-LV-DP-120 | -79d | 0d | Skilled Labor [32 h]; Electrician [32 h]; Supply and installation of KWH meter mounting frame including concrete block for installation of KWH meter according to the standards and specifications of SEC. [0.6] | 717.32 | LV |  |
| CON-LV-TT-100 |  | Testing and Termination Works for Substation Low Voltage Panel Boards of Low Voltage Network for Alignment-RD-03-1 | 2d | 2027-04-27 | 2027-04-28 | CON-LV-TT-110, PRO-LV-TT-1DL-100, PRO-LV-TT-DL-100, CON-LV-HC-120, CON-LV-ML-120 | -69d | 4d | Skilled Labor [96 h]; Electrician [96 h]; 4C-300mm2 CU/XLPE / PVC ARMORED CABLE [1.67]; 4C-240mm2 CU/XLPE / PVC ARMORED CABLE [0.96]; 4C-185mm2 CU/XLPE / PVC ARMORED CABLE [0.96]; 4C-50mm2 CU/XLPE / PVC ARMORED CABLE [3.58]; 4C-16mm2 CU/XLPE / PVC ARMORED CABLE [82.51]; 4C-16MM2 CU/XLPE / PVC CABLE [33.31]; 1Cx150sq.mm2,Cu, PVC wire [1.67]; 1Cx120sq.mm2,Cu, PVC wire [2.15]; 1Cx95sq.mm,Cu, PVC wire [0.96]; 1Cx70sq.mm2,Cu, PVC wire [0.48]; 1Cx25sq.mm2,Cu, PVC wire [2.15]; 1Cx16sq.mm2,Cu, PVC wire [82.51]; 1Cx10sq.mm2,Cu, PVC wire [0.72] | 7,514.84 | LV |  |
|  | 1 | **Earthing System Works** |  | 2027-04-27 | 2027-04-28 |  |  |  |  |  |  |  |
| CON-LV-ES-100 |  | Earthing System Works for Distribution Pillars Units of Low Voltage Network for Alignment-RD-03-1 | 2d | 2027-04-27 | 2027-04-28 | CON-LV-TT-110, PRO-LV-DP-1DL-110, PRO-LV-DP-DL-120, CON-LV-DP-120 | -79d | 3d | Skilled Labor [16 h]; Electrician [16 h]; Supply and installation of KWH meter mounting frame including concrete block for installation of KWH meter according to the standards and specifications of SEC. [0.3] | 358.66 | LV |  |
|  | 12 | **Street Lighting Network** |  | 2027-04-26 | 2027-05-23 |  |  |  |  |  |  |  |
|  | TR | **Termination and Testing Works** |  | 2027-04-26 | 2027-05-23 |  |  |  |  |  |  |  |
| CO-SL-LP-580 |  | Installation Works for Lighting Fixtures With Drop Wire of Street Lighting Network for Alignment-RD-03-1 | 6d | 2027-04-26 | 2027-05-02 | PRO-R25-SL-DL-160, CO-SL-CL-420, ENG-MT-SL-DB-A-100, MS-CS-SL SS, MS-MM-130, MS-MM-140, CO-EW-200, ENG-MT-SL-A-120, PRO-R25-SL-DL-140, CO-SL-LP-570, CO-SL-LP-530 | -86d | 0d | Unskilled Labor [48 h]; Electrician [48 h]; Man Left [48 h]; Street Lighting( LED) Luminaire of Output ? 20,965 lumen complete with control gear and lamp, (129.1) WATT. [11.94] | 4,687.92 | SL |  |
| CO-SL-TF-570 |  | Testing Works for Lighting Poles of Street Lighting Network for Alignment-RD-03-1 | 6d | 2027-05-11 | 2027-05-23 | PRO-R25-SL-DL-160, CO-SL-LP-570, CO-SL-CL-420, ENG-MT-SL-DB-A-100, MS-CS-SL SS, MS-MM-130, MS-MM-140, CO-EW-200, CO-SL-LP-580, CO-SL-ES-330, PRO-R25-SL-DL-130, CO-SL-TF-530 | -85d | 0d | Unskilled Labor [48 h]; Electrician [48 h]; Lighting poles with 1 arm, height of (12) meters, including the power distribution box, cables, and RCC foundation. [1.79]; Lighting poles with 2 arms, height of (12) meters, including the power distribution box, cables, and RCC foundation. | 4,315.34 | SL | CO-R26.S11-SL-200 |
|  | ES | **Earthing System Works** |  | 2027-05-04 | 2027-05-09 |  |  |  |  |  |  |  |
| CO-SL-ES-320 |  | Install Earthing System Works for Lighting Poles of Street Lighting Network for Alignment-RD-03-1 | 3d | 2027-05-04 | 2027-05-06 | CO-SL-LP-580, ENG-MT-SL-ES-A-100, PRO-R25-SL-DL-150 | -87d | 0d | Unskilled Labor [48 h]; Electrician [24 h]; JCB [24 h]; Including earthing of lighting poles, masts, feeder pillars, unit substations and LV feeders. [4.48] | 515.37 | SL |  |
| CO-SL-ES-330 |  | Install Earthing System Works for Lighting Panel Boards of Street Lighting Network for Alignment-RD-03-1 | 2d | 2027-05-08 | 2027-05-09 | CO-SL-ES-320, PRO-R25-SL-DL-150 | -86d | 0d | Unskilled Labor [32 h]; Electrician [16 h]; JCB [16 h]; Including earthing of lighting poles, masts, feeder pillars, unit substations and LV feeders. [4.48] | 515.37 | SL |  |
|  | 3 | **Telecom and Light Current Network** |  | 2027-04-22 | 2027-04-28 |  |  |  |  |  |  |  |
|  | 1 | **Testing and Finishes** |  | 2027-04-22 | 2027-04-28 |  |  |  |  |  |  |  |
| CO-TE-CTV-TF-140 |  | Testing and Interface modules with Telecom for Alignment-RD-03-1 | 6d | 2027-04-22 | 2027-04-28 | CO-TE-CTV-110 | -81d | 0d | Skilled Labor [48 h]; Electrician [48 h]; 2-ways ducts, 32mm diameter [31.82]; 2x3-ways ducts, 50mm diameter [100.9]; 8-ways ducts, 6 x 160mm & 2 x 100mm [7.57]; 2 PVC ducts 150x200 mm (60mm diameter); 4 PVC ducts 600x150 mm (60mm diameter); 8 PVC ducts 1000x300 mm (60mm diameter); 6 PVC ducts 600x800 mm (60mm diameter); Manhole Type 3 (1200 x 1200 x 2000) [1.12]; Manhole Type 1 (800 x 600 x 1200) [0.75] | 12,606.78 | CTV |  |
| CO-TE-CTV-TF-330 |  | Testing and Interface modules with CCTV, Telephone, MSN and Access Control for Alignment-RD-03-1 | 6d | 2027-04-22 | 2027-04-28 | CO-TE-CTV-110, CO-TE-CTV-TF-140 SS | -81d | 0d | Skilled Labor [48 h]; Electrician [48 h]; NVR Server with RAID (5, 6 or 10) to record all cameras storage 80TB with all hardware / software / licenses etc. [0.04]; VMS Server with RAID (5, 6 or 10) complete Hardware / Software with one Color Laser Printer and all associated accessories for central management. [0.04]; Licenses for Cameras, Workstations and Keyboards [0.02]; Work Station (MMI with two monitors each, for Monitoring for CCTV & ACS) [0.03]; Keyboard with joystick for CCTV with all accessories as per specification [0.03]; Pole mounted IP( PoE) Fixed camera, 5MP,IP 66, IR illumination, 3-8mm varifocal, auto iris lens type [0.9]; Wall mounted IP( PoE) Fixed camera, 5MP,IP 66, IR illumination, 3-8mm varifocal, auto iris lens type [1.1]; 5MP Dome camera ceiling Mounted IP (PoE) indoor [0.39]; 5MP PTZ Multi Sensor Camera IP(PoE) 360 Degree View Outdoor with accessories (IP 66) [0.16]; 8 Port Industrial PoE Switch 10/100BaseT (0 deg to +70 deg. Celsius) [0.25]; Filed Equipment cabinet (FEC), with fan and ventilation, NEMEX 4X ,door, minimum size (600x600x400mm), the cabinet/enclosure includes industrial switch and UPS. [0.25]; IP Phone Communication server (hot standby) 50 Port equipped, Gateway, Gatekeeper, H.323, SIP, redundant Power etc. [0.07]; IP Phone Voice gateway [0.03]; Voice IP Phone [0.03]; NMS Server for IP phone and NETWORK Elements [0.03]; NMS Workstation [0.03]; Firm Ware, software & licenses [0.03]; Data Cable [0.03]; Power Cable [0.03]; Layer 3, 24 Port non-PoE switch10/1000BaseT/LX (-40 deg to +70 deg. Celsius), stack module and associated accessories for utility Telecom Server room [0.04]; Layer 2, 24 Port non-PoE switch10/1000BaseT (-40 deg to +70 deg. Celsius), stack module and associated accessories for utility Telecom Server and Security Guard house room [0.13]; Network Management System Server [0.04]; Network Management System workstation [0.03]; 42U rack dimension (W x H x L) 800 x 2000 x 1000 mm [0.04]; 12U rack dimension (W x H x L) 600 x 625 x 600 mm [0.03]; 06C Optical Fiber SM [40.75]; 48C Optical Fiber SM [129.85]; 48 Core Splice Closure [0.16]; Optical fiber patch cord 5m [0.54]; Data Cable (STP CAT 6A) [231.04]; 3C Power Cable armored 1.5mm2 [231.04]; 3C Power Cable armored 2.5 mm2 [231.04]; UTP CAT6A Patch Cord 1m/3m/5m [0.52]; Access Control Unit [0.12]; Access Card Reader [0.12]; Magnetic Lock [0.12]; Break Glass [0.09]; Exit Push button [0.12]; Door Sensor [0.12]; Biometrics Reader [0.18]; Smart Card Printer [0.03]; Card Issue Work Station [0.03]; Photographic Camera with stand [0.03]; Interface modules with CCTV, Fire and other systems [0.03]; 1-ways ducts, 6 x 50mm diameter [11.42]; 6 PVC ducts 150x200 mm (60mm diameter) [2.58] | 48,969.18 | CTV |  |
|  | 2 | **Alignment-RD-03-2** |  | 2026-11-09 | 2027-06-28 |  |  |  |  |  |  |  |
|  | EW | **Earthworks** |  | 2026-11-09 | 2026-11-22 |  |  |  |  |  |  |  |
|  | EW | **Earthworks** |  | 2026-11-09 | 2026-11-22 |  |  |  |  |  |  |  |
| CO-EW-240 |  | Excavation and Backfilling Works Upto Design Level for Earthworks for Alignment-RD-03-2 | 12d | 2026-11-09 | 2026-11-22 | CO-EW-210, CO-EW-210_R, MS-CS-PS SS, MOB-30, MOB-20, MOB-80, MOB-40, MOB-50, MOB-60, MOB-10, MOB-70, PRE-CON-MDC-10, PRE-CON-MDC-20, PRE-CON-MDC-30, PRE-CON-MDC-40, PRE-CON-MDC-50, PRE-CON-MDC-60, PRE-CON-MDC-70, PRE-CON-MDC-80, MS-MM-100, MS-MM-130, MS-MM-140, MS-MM-150 | -60d | 23d | Skilled Labor [624 h]; Unskilled Labor [624 h]; Dozer [624 h]; Water Tanker [624 h]; Excavations (including Roads , Plots and Pond) [3271]; Embankments to the Site and Roads (including Roads , Plots and Pond) [55650] | 1,830,832.94 | FE |  |

| ID | WBS | Activity | Duration | Start | Finish | Predecessors | Total float | Free float | Resources | Cost | Activity ID N | 01- Network |
| --- | --- | --- | --- | --- | --- | --- | --- | --- | --- | --- | --- | --- |
|  | SD | **Storm Drainage Network** |  | 2026-12-31 | 2027-02-23 |  |  |  |  |  |  |  |
|  | MH | **Manholes** |  | 2026-12-31 | 2027-02-10 |  |  |  |  |  |  |  |
| CO-SD-MH-350 |  | Trench Excavation and Bedding Works for Manholes of Storm Drainage Network for Alignment-RD-03-2 | 10d | 2026-12-31 | 2027-01-11 | CO-SD-ML-130, ENG-MT-SD-ML-A-100, MS-CS-SD SS, CO-EW-240, ENG-MS-SD-ML-A-110, ENG-MT-SD-ML-A-110, ENG-SH-SD-ML-A-110, MS-MM-130, MS-MM-140, CO-SD-MH-230 | -93d | 0d | Skilled Labor [48 h]; Unskilled Labor [48 h]; Excavator [48 h]; MH depth 1.5 - 2.5m [0.45]; MH depth 2.5 - 3.5m [0.3]; MH depth 3.5 - 4.5m [0.22]; MH depth > 4.50m [0.07]; MH depth 2.5 -3.5m; MH depth > 3.50m | 10,910.51 | CO-R26.S11-SD-180 | SD |
| CO-SD-MH-360 |  | Install RC Footing Works for Manholes of Storm Drainage Network for Alignment-RD-03-2 | 9d | 2027-01-12 | 2027-01-21 | CO-SD-MH-350, PRO-R25-SD-DL-100 FF, PRO-SD-1DL-100, CO-SD-MH-240 | -93d | 0d | Carpenter [96 h]; Steel fixer [96 h]; MH depth 1.5 - 2.5m [2.24]; MH depth 2.5 - 3.5m [1.49]; MH depth 3.5 - 4.5m [1.12]; MH depth > 4.50m [0.37]; MH depth 2.5 -3.5m; MH depth > 3.50m | 54,552.58 | CO-R26.S11-SD-190 | SD |
| CO-SD-MH-370 |  | Install RC Wall Rings & Slab Works for Manholes of Storm Drainage Network for Alignment-RD-03-2 | 10d | 2027-01-23 | 2027-02-02 | CO-SD-MH-360, PRO-SD-1DL-100, CO-SD-MH-250 | -93d | 0d | Carpenter [96 h]; Steel fixer [96 h]; MH depth 1.5 - 2.5m [2.69]; MH depth 2.5 - 3.5m [1.79]; MH depth 3.5 - 4.5m [1.34]; MH depth > 4.50m [0.45]; MH depth 2.5 -3.5m; MH depth > 3.50m | 65,463.09 | CO-R26.S11-SD-200 | SD |
| CO-SD-MH-380 |  | Backfilling Works for Manholes of Storm Drainage Network for Alignment-RD-03-2 | 7d | 2027-02-03 | 2027-02-10 | CO-SD-MH-370, CO-SD-MH-260 | -82d | 11d | Skilled Labor [64 h]; Water Tanker [64 h]; Loader [64 h]; MH depth 1.5 - 2.5m [1.34]; MH depth 2.5 - 3.5m [0.9]; MH depth 3.5 - 4.5m [0.67]; MH depth > 4.50m [0.22]; MH depth 2.5 -3.5m; MH depth > 3.50m | 32,731.55 | CO-R26.S11-SD-220 | SD |
|  | ML | **Main Line Sections** |  | 2027-02-03 | 2027-02-23 |  |  |  |  |  |  |  |
| CO-SD-ML-230 |  | Trench Excavation and Bedding Works for Main Lines of Storm Drainage Network for Alignment-RD-03-2 | 7d | 2027-02-03 | 2027-02-10 | CO-EW-240, ENG-SH-SD-ML-A-110, ENG-MS-SD-ML-A-110, ENG-MT-SD-ML-A-110, MS-CS-SD SS, MS-MM-130, MS-MM-140, CO-SD-MH-370, CO-SD-MH-350 SS, CO-SD-MH-350 FF, CO-SD-ML-140 | -93d | 0d | Skilled Labor [48 h]; Unskilled Labor [48 h]; Excavator [48 h]; Depth Between 0m to 1.50m; Depth Between 1.50m to 2.50m; Depth Between 2.50m to 3.50m; Depth > 3.50m; Depth Between 2.50m to 3.50m [19.94]; Depth Between 3.50m to 4.50m [20.15]; Depth > 4.50m; Depth Between 0m to 1.50m [4.18]; Depth Between 1.50m to 2.50m [4.33]; Depth Between 2.50m to 3.50m [35.82]; Depth Between 3.50m to 4.50m; GRP Pipe, 900mm diameter with Depth Between 3.51m to 4.50m | 39,654.51 |  | SD |
| CO-SD-ML-240 |  | Pipes Laying Works for Main Lines of Storm Drainage Network for Alignment-RD-03-2 | 5d | 2027-02-11 | 2027-02-16 | CO-SD-ML-230, PRO-R25-SD-DL-120 FF, PRO-SD-1DL-110, CO-SD-MH-370, CO-SD-ML-150 SS | -93d | 0d | Skilled Labor [96 h]; Unskilled Labor [48 h]; Plumber [48 h]; Excavator [48 h]; Depth Between 0m to 1.50m; Depth Between 1.50m to 2.50m; Depth Between 2.50m to 3.50m; Depth > 3.50m; Depth Between 2.50m to 3.50m [59.81]; Depth Between 3.50m to 4.50m [60.45]; Depth > 4.50m; Depth Between 0m to 1.50m [20.9]; Depth Between 1.50m to 2.50m [21.64]; Depth Between 2.50m to 3.50m [107.46]; Depth Between 3.50m to 4.50m; GRP Pipe, 900mm diameter with Depth Between 3.51m to 4.50m | 126,283.48 |  | SD |
| CO-SD-ML-250 |  | Trench Backfilling and Compaction Works for Main Lines of Storm Drainage Network for Alignment-RD-03-2 | 6d | 2027-02-17 | 2027-02-23 | CO-SD-ML-240, CO-SD-ML-160 SS, CO-SD-MH-380 FF | -93d | 0d | Skilled Labor [48 h]; Water Tanker [48 h]; Loader [48 h]; Compactor [48 h]; Depth Between 0m to 1.50m; Depth Between 1.50m to 2.50m; Depth Between 2.50m to 3.50m; Depth > 3.50m; Depth Between 2.50m to 3.50m [26.58]; Depth Between 3.50m to 4.50m [26.87]; Depth > 4.50m; Depth Between 0m to 1.50m [8.36]; Depth Between 1.50m to 2.50m [8.66]; Depth Between 2.50m to 3.50m [47.76]; Depth Between 3.50m to 4.50m; GRP Pipe, 900mm diameter with Depth Between 3.51m to 4.50m | 55,312.66 |  | SD |
|  | CB | **Catch Basin Sections** |  |  |  |  |  |  |  |  |  |  |
|  | SW | **Sewage Network** |  |  |  |  |  |  |  |  |  |  |
|  | 1 | **Manholes** |  |  |  |  |  |  |  |  |  |  |
|  | ML | **Main Line Sections** |  |  |  |  |  |  |  |  |  |  |
|  | IR | **Irrigation Network** |  |  |  |  |  |  |  |  |  |  |
|  | ML | **Main Line Pipes** |  |  |  |  |  |  |  |  |  |  |
|  | MV | **Medium Voltage Network** |  | 2027-02-24 | 2027-03-15 |  |  |  |  |  |  |  |
|  | CW | **Cabling Works** |  | 2027-02-24 | 2027-03-15 |  |  |  |  |  |  |  |
| CO-MV-ML-370 |  | Trench Excavation and Bedding Works for Medium Voltage Network for Alignment-RD-03-2 | 5d | 2027-02-24 | 2027-03-01 | CO-SD-CB-200, PRO-R25-SD-DL-110, PRO-R25-SD-DL-130, PRO-SD-1DL-130, PRO-SD-1DL-120, CO-SD-CB-190, ENG-MT-SD-CB-A-110, ENG-SH-SD-CB-A-110, ENG-MS-SD-CB-A-110, MS-CS-SD SS, CO-SD-CB-180, CO-SW-MH-250, CO-SW-MH-240, CO-SW-MH-230, PRO-SW-1DL-110, PRO-R25-SW-DL-110, CO-SW-MH-220, ENG-MT-SW-ML-A-100, ENG-SH-SW-ML-A-110, MS-CS-SW SS, ENG-MS-SW-ML-A-110, CO-SW-MH-210, CO-SW-ML-160, PRO-SW-1DL-100, PRO-R25-SW-DL-100, CO-SW-ML-150, ENG-MT-SW-ML-A-110, CO-SW-ML-140, ENG-SH-MV-A-110, ENG-MS-MV-A-110, MS-CS-MV SS, CO-SD-ML-250, CO-SD-MH-380, CO-EW-240, MS-MM-130, MS-MM-140, CO-MV-ML-280 | -93d | 0d | Skilled Labor [40 h]; Unskilled Labor [40 h]; Excavator [40 h]; Excavation for Trench size 40cm wide and 80cm deep (for 1 cable) [134.7]; Excavation for Trench Size 60cm wide and 80cm deep (for 2 cables) [67.24]; Excavation for Trench Size 90cm wide and 80cm deep (for 3 cables); Excavation for Trench Size 180cm wide and 80cm deep (for 6 cables); Excavation for Trench Size 210 cm wide and 80cm deep (for 7 cables); Excavation for Trench Size 240cm wide and 80cm deep (for 8 cables) | 5,552.71 |  | MV |
| CO-MV-ML-380 |  | Duct Laying Works for Medium Voltage Network for Alignment-RD-03-2 | 5d | 2027-03-02 | 2027-03-07 | CO-MV-ML-370, PRO-MV-DL-100, PRO-MV-1DL-100, CO-MV-ML-290 | -89d | 0d | Unskilled Labor [160 h]; Electrician [40 h]; JCB [40 h]; Duct bank for (33) cables; Duct bank for (21) cables; Duct bank for (15) cables [17.73]; HV Cable Road Crossing [2.63] | 13,701.02 |  | MV |
| CO-MV-ML-390 |  | Trench Backfilling and Compaction Works for Medium Voltage Network for Alignment-RD-03-2 | 4d | 2027-03-08 | 2027-03-15 | CO-MV-ML-380, CO-MV-ML-300 | -89d | 0d | Skilled Labor [64 h]; Water Tanker [32 h]; JCB [32 h]; Duct bank for (33) cables; Duct bank for (21) cables; Duct bank for (15) cables [8.06]; HV Cable Road Crossing [1.19] | 6,227.74 |  | MV |
|  | LV | **Low Voltage Network** |  | 2027-03-30 | 2027-05-03 |  |  |  |  |  |  |  |
|  | MLVC | **Main Low Voltage Cables Works ( Cable 300 MM )** |  | 2027-03-30 | 2027-04-22 |  |  |  |  |  |  |  |
| CON-LV-ML-220 |  | Trench Excavation and Bedding Works for Main Cable of Low Voltage Network for Alignment-RD-03-2 | 6d | 2027-03-30 | 2027-04-05 | CO-SD-CB-200, PRO-R25-SD-DL-110, PRO-R25-SD-DL-130, PRO-SD-1DL-130, PRO-SD-1DL-120, CO-SD-CB-190, ENG-MT-SD-CB-A-110, ENG-SH-SD-CB-A-110, ENG-MS-SD-CB-A-110, MS-CS-SD SS, CO-SD-ML-250, CO-SD-CB-180, CO-SW-ML-160, CO-SW-MH-250, CO-SW-MH-240, CO-SW-MH-230, PRO-SW-1DL-110, PRO-R25-SW-DL-110, CO-SW-MH-220, ENG-MT-SW-ML-A-100, ENG-SH-SW-ML-A-110, MS-CS-SW SS, ENG-MS-SW-ML-A-110, CO-SD-MH-380, CO-SW-MH-210, PRO-SW-1DL-100, PRO-R25-SW-DL-100, CO-SW-ML-150, ENG-MT-SW-ML-A-110, CO-SW-ML-140, ENG-SH-LV-A-120, ENG-MS-MV-A-120, MS-CS-LV SS, CO-MV-ML-390, CO-EW-240, MS-MM-130, MS-MM-140, CON-LV-ML-130 | -101d | 0d | Skilled Labor [48 h]; Unskilled Labor [48 h]; Excavator [48 h]; Road crossing ducts, 2 ways (2 x 150mm HDPE) [36.87]; Road crossing ducts, 2 ways (2 x 110mm UPVC) [14.64]; Road crossing ducts, 3 ways (3 x 110mm UPVC) [4.87] | 8,206.19 |  | LV |
| CON-LV-ML-230 |  | Cable Laying Works for Main Cable of Low Voltage Network for Alignment-RD-03-2 | 9d | 2027-04-06 | 2027-04-15 | CON-LV-ML-220, PRO-LV-ML-1DL-100, PRO-LV-ML-DL-100, CON-LV-ML-140 | -101d | 0d | Skilled Labor [48 h]; Unskilled Labor [192 h]; Electrician [48 h]; JCB [48 h]; 4C-300mm2 CU/XLPE / PVC ARMORED CABLE [5.18]; 4C-240mm2 CU/XLPE / PVC ARMORED CABLE [2.96]; 4C-185mm2 CU/XLPE / PVC ARMORED CABLE [2.96]; 4C-50mm2 CU/XLPE / PVC ARMORED CABLE [11.09]; 4C-16mm2 CU/XLPE / PVC ARMORED CABLE [255.25]; 4C-16MM2 CU/XLPE / PVC CABLE [103.06]; 1Cx150sq.mm2,Cu, PVC wire [5.18]; 1Cx120sq.mm2,Cu, PVC wire [6.66]; 1Cx95sq.mm,Cu, PVC wire [2.96]; 1Cx70sq.mm2,Cu, PVC wire [1.48]; 1Cx25sq.mm2,Cu, PVC wire [6.66]; 1Cx16sq.mm2,Cu, PVC wire [255.25]; 1Cx10sq.mm2,Cu, PVC wire [2.22] | 23,255.17 |  | LV |
| CON-LV-ML-240 |  | Trench Backfilling and Compaction Works for Main Cable of Low Voltage Network for Alignment-RD-03-2 | 6d | 2027-04-17 | 2027-04-22 | CON-LV-ML-230, CON-LV-ML-150 | -98d | 3d | Skilled Labor [96 h]; Water Tanker [48 h]; JCB [48 h]; 4C-300mm2 CU/XLPE / PVC ARMORED CABLE [2.36]; 4C-240mm2 CU/XLPE / PVC ARMORED CABLE [1.34]; 4C-185mm2 CU/XLPE / PVC ARMORED CABLE [1.34]; 4C-50mm2 CU/XLPE / PVC ARMORED CABLE [5.04]; 4C-16mm2 CU/XLPE / PVC ARMORED CABLE [116.03]; 4C-16MM2 CU/XLPE / PVC CABLE [46.85]; 1Cx150sq.mm2,Cu, PVC wire [2.36]; 1Cx120sq.mm2,Cu, PVC wire [3.03]; 1Cx95sq.mm,Cu, PVC wire [1.34]; 1Cx70sq.mm2,Cu, PVC wire [0.67]; 1Cx25sq.mm2,Cu, PVC wire [3.03]; 1Cx16sq.mm2,Cu, PVC wire [116.03]; 1Cx10sq.mm2,Cu, PVC wire [1.01] | 10,574.48 |  | LV |

| ID | WBS | Activity | Duration | Start | Finish | Predecessors | Total float | Free float | Resources | Cost | 01- Network | Activity ID N |
| --- | --- | --- | --- | --- | --- | --- | --- | --- | --- | --- | --- | --- |
|  | SLVC | **Service Low Voltage Cables Works ( Cable 70 MM )** |  | 2027-04-06 | 2027-05-03 |  |  |  |  |  |  |  |
| CON-LV-HC-220 |  | Trench Excavation and Bedding Works for Service Cable of Low Voltage Network for Alignment-RD-03-2 | 5d | 2027-04-06 | 2027-04-11 | CO-SD-CB-200, PRO-R25-SD-DL-110, PRO-R25-SD-DL-130, PRO-SD-1DL-130, PRO-SD-1DL-120, CO-SD-CB-190, ENG-MT-SD-CB-A-110, ENG-SH-SD-CB-A-110, ENG-MS-SD-CB-A-110, MS-CS-SD SS, CO-SD-CB-180, CO-SW-MH-250, CO-SW-MH-240, CO-SW-MH-230, PRO-SW-1DL-110, PRO-R25-SW-DL-110, CO-SW-MH-220, ENG-MT-SW-ML-A-100, ENG-SH-SW-ML-A-110, MS-CS-SW SS, ENG-MS-SW-ML-A-110, CO-SW-MH-210, CO-SW-ML-160, PRO-SW-1DL-100, PRO-R25-SW-DL-100, CO-SW-ML-150, ENG-MT-SW-ML-A-110, CO-SW-ML-140, CON-LV-ML-220, ENG-MS-MV-A-120, MS-CS-LV SS, CO-EW-240, ENG-SH-LV-A-120, MS-MM-130, MS-MM-140, CO-SD-ML-250, CO-SD-MH-380, CON-LV-HC-130 | -97d | 4d | Skilled Labor [40 h]; Unskilled Labor [40 h]; Excavator [40 h]; Road crossing ducts, 2 ways (2 x 150mm HDPE) [18.43]; Road crossing ducts, 2 ways (2 x 110mm UPVC) [7.33]; Road crossing ducts, 3 ways (3 x 110mm UPVC) [2.43] | 4,103.85 | LV |  |
| CON-LV-HC-230 |  | Cable Laying Works for Service Cable of Low Voltage Network for Alignment-RD-03-2 | 9d | 2027-04-17 | 2027-04-26 | CON-LV-HC-220, CON-LV-ML-230, PRO-LV-HC-1DL-100, PRO-LV-HC-DL-100, CON-LV-HC-140 | -101d | 0d | Skilled Labor [40 h]; Unskilled Labor [160 h]; Electrician [40 h]; JCB [40 h]; 4C-300mm2 CU/XLPE / PVC ARMORED CABLE [5.18]; 4C-240mm2 CU/XLPE / PVC ARMORED CABLE [2.96]; 4C-185mm2 CU/XLPE / PVC ARMORED CABLE [2.96]; 4C-50mm2 CU/XLPE / PVC ARMORED CABLE [11.09]; 4C-16mm2 CU/XLPE / PVC ARMORED CABLE [255.25]; 4C-16MM2 CU/XLPE / PVC CABLE [103.06]; 1Cx150sq.mm2,Cu, PVC wire [5.18]; 1Cx120sq.mm2,Cu, PVC wire [6.66]; 1Cx95sq.mm,Cu, PVC wire [2.96]; 1Cx70sq.mm2,Cu, PVC wire [1.48]; 1Cx25sq.mm2,Cu, PVC wire [6.66]; 1Cx16sq.mm2,Cu, PVC wire [255.25]; 1Cx10sq.mm2,Cu, PVC wire [2.22] | 23,255.17 | LV |  |
| CON-LV-HC-240 |  | Trench Backfilling and Compaction Works for Service Cable of Low Voltage Network for Alignment-RD-03-2 | 6d | 2027-04-27 | 2027-05-03 | CON-LV-HC-230, CON-LV-ML-240, CON-LV-HC-150 | -101d | 0d | Skilled Labor [96 h]; Water Tanker [48 h]; JCB [48 h]; 4C-300mm2 CU/XLPE / PVC ARMORED CABLE [2.36]; 4C-240mm2 CU/XLPE / PVC ARMORED CABLE [1.34]; 4C-185mm2 CU/XLPE / PVC ARMORED CABLE [1.34]; 4C-50mm2 CU/XLPE / PVC ARMORED CABLE [5.04]; 4C-16mm2 CU/XLPE / PVC ARMORED CABLE [116.03]; 4C-16MM2 CU/XLPE / PVC CABLE [46.85]; 1Cx150sq.mm2,Cu, PVC wire [2.36]; 1Cx120sq.mm2,Cu, PVC wire [3.03]; 1Cx95sq.mm,Cu, PVC wire [1.34]; 1Cx70sq.mm2,Cu, PVC wire [0.67]; 1Cx25sq.mm2,Cu, PVC wire [3.03]; 1Cx16sq.mm2,Cu, PVC wire [116.03]; 1Cx10sq.mm2,Cu, PVC wire [1.01] | 10,574.48 | LV |  |
|  | DP | **Distribution Pillars Works** |  | 2027-04-07 | 2027-04-19 |  |  |  |  |  |  |  |
| CON-LV-DP-220 |  | Foundation Excavation Works for Distribution Pillars of Low Voltage Network for Alignment-RD-03-2 | 7d | 2027-04-07 | 2027-04-14 | CON-LV-ML-220, ENG-MS-MV-A-120, MS-CS-LV SS, CO-EW-240, MS-MM-130, MS-MM-140, CON-LV-DP-130 | -89d | 0d | Unskilled Labor [112 h]; Excavator [56 h]; Road crossing ducts, 2 ways (2 x 150mm HDPE) [6.15]; Road crossing ducts, 2 ways (2 x 110mm UPVC) [2.45]; Road crossing ducts, 3 ways (3 x 110mm UPVC) [0.81] | 1,368.55 | LV |  |
| CON-LV-DP-230 |  | Pouring Plain Concrete For Distribution Pillar Units of Low Voltage Network for Alignment-RD-03-2 | 2d | 2027-04-15 | 2027-04-17 | CON-LV-DP-130, CON-LV-DP-220 | -89d | 0d | Skilled Labor [16 h]; Mason [16 h]; Carpenter [32 h]; Supply and installation of KWH meter mounting frame including concrete block for installation of KWH meter according to the standards and specifications of SEC. [0.52] | 627.65 | LV |  |
| CON-LV-DP-240 |  | Installation Works for Distribution Pillar Units of Low Voltage Network for Alignment-RD-03-2 | 2d | 2027-04-18 | 2027-04-19 | CON-LV-DP-130, CON-LV-DP-230, PRO-LV-DP-1DL-100, PRO-LV-DP-DL-100 | -89d | 0d | Unskilled Labor [16 h]; Electrician [16 h]; Supply and installation of KWH meter mounting frame including concrete block for installation of KWH meter according to the standards and specifications of SEC. [0.52] | 627.65 | LV |  |
|  | SL | **Street Lighting Network** |  | 2027-03-02 | 2027-04-11 |  |  |  |  |  |  |  |
|  | LP | **Lighting Poles Works** |  | 2027-03-02 | 2027-03-24 |  |  |  |  |  |  |  |
| CO-SL-LP-500 |  | Installation Works for Lighting Poles Foundation of Street Lighting Network for Alignment-RD-03-2 | 5d | 2027-03-02 | 2027-03-07 | ENG-SH-SL-A-110, ENG-MS-SL-A-110, ENG-MT-SL-A-100, MS-CS-SL SS, MS-MM-130, MS-MM-140, CO-EW-240, CO-MV-ML-370, PRO-R25-SL-DL-110 | -82d | 1d | Unskilled Labor [80 h]; Excavator [40 h]; Lighting poles with 1 arm, height of (12) meters, including the power distribution box, cables, and RCC foundation. [2.01]; Lighting poles with 2 arms, height of (12) meters, including the power distribution box, cables, and RCC foundation. | 4,854.76 | SL |  |
| CO-SL-LP-510 |  | Installation Works for Lighting Poles of Street Lighting Network for Alignment-RD-03-2 | 5d | 2027-03-13 | 2027-03-17 | CO-SL-LP-500, ENG-MT-SL-A-110, PRO-R25-SL-DL-120 | -83d | 0d | Unskilled Labor [80 h]; Boom Truck [40 h]; Lighting poles with 1 arm, height of (12) meters, including the power distribution box, cables, and RCC foundation. [6.72]; Lighting poles with 2 arms, height of (12) meters, including the power distribution box, cables, and RCC foundation. | 16,182.54 | SL |  |
| CO-SL-LP-520 |  | Backfilling Works for Lighting Poles of Street Lighting Network for Alignment-RD-03-2 | 6d | 2027-03-18 | 2027-03-24 | CO-SL-LP-510 | -79d | 15d | Unskilled Labor [48 h]; Excavator [48 h]; Lighting poles with 1 arm, height of (12) meters, including the power distribution box, cables, and RCC foundation. [0.67]; Lighting poles with 2 arms, height of (12) meters, including the power distribution box, cables, and RCC foundation. | 1,618.25 | SL | CO-R26.S11-SL-210 |
|  | CW | **Cabling Works** |  | 2027-03-31 | 2027-04-11 |  |  |  |  |  |  |  |
| CO-SL-CL-380 |  | Cable Laying Works for Street Lighting Network for Alignment-RD-03-2 | 5d | 2027-03-31 | 2027-04-05 | ENG-SH-SL-A-110, ENG-MS-SL-A-110, ENG-MT-SL-ML-A-100, PRO-SL-1DL-100, MS-CS-SL SS, MS-MM-130, MS-MM-140, CO-SL-LP-510, CO-PW-ML-160, CO-PW-FH-190, CO-EW-240, CO-MV-ML-390, CO-SD-ML-250, CO-SD-MH-380, CO-SD-CB-200, PRO-R25-SD-DL-110, PRO-R25-SD-DL-130, PRO-SD-1DL-130, PRO-SD-1DL-120, CO-SD-CB-190, ENG-MT-SD-CB-A-110, ENG-SH-SD-CB-A-110, ENG-MS-SD-CB-A-110, MS-CS-SD SS, CO-SD-CB-180, CO-SW-MH-250, CO-SW-MH-240, CO-SW-MH-230, PRO-SW-1DL-110, PRO-R25-SW-DL-110, CO-SW-MH-220, ENG-MT-SW-ML-A-100, ENG-SH-SW-ML-A-110, MS-CS-SW SS, ENG-MS-SW-ML-A-110, CO-SW-MH-210, CO-SW-ML-160, PRO-SW-1DL-100, PRO-R25-SW-DL-100, CO-SW-ML-150, ENG-MT-SW-ML-A-110, CO-SW-ML-140, CO-IR-ML-180, CO-IR-ML-190, ENG-MT-IR-ML-A-110, PRO-IR-1DL-110, PRO-R25-IR-DL-110, CO-IR-ML-170, PRO-IR-1DL-100, PRO-R25-IR-DL-100, CO-IR-ML-160, ENG-SH-IR-ML-A-110, ENG-MS-IR-ML-A-110, ENG-MT-IR-ML-A-100, MS-CS-IR SS, CO-IR-ML-150, PRO-R25-SL-DL-100 | -94d | 0d | Skilled Labor [40 h]; Unskilled Labor [80 h]; Electrician [40 h]; JCB [40 h]; Lighting poles with 1 arm, height of (12) meters, including the power distribution box, cables, and RCC foundation. [7.39]; Lighting poles with 2 arms, height of (12) meters, including the power distribution box, cables, and RCC foundation. | 17,800.79 | SL |  |
| CO-SL-CL-390 |  | Trench Backfilling and Compaction Works for Street Lighting Network for Alignment-RD-03-2 | 5d | 2027-04-06 | 2027-04-11 | CO-SL-CL-380, CO-SL-LP-520 FF | -94d | 6d | Skilled Labor [40 h]; Water Tanker [40 h]; Excavator [40 h]; Lighting poles with 1 arm, height of (12) meters, including the power distribution box, cables, and RCC foundation. [6.04]; Lighting poles with 2 arms, height of (12) meters, including the power distribution box, cables, and RCC foundation. | 14,564.29 | SL |  |
|  | DPB | **Distrubution Panel Boards** |  |  |  |  |  |  |  |  |  |  |
|  | TE | **Telecom and Light Current Network** |  | 2027-05-04 | 2027-05-06 |  |  |  |  |  |  |  |
|  | PD | **Ducts Works** |  |  |  |  |  |  |  |  |  |  |
|  | MH | **Manholes Works** |  |  |  |  |  |  |  |  |  |  |
|  | DD | **CCTV, Telephone, MSN, ACs System Works** |  | 2027-05-04 | 2027-05-06 |  |  |  |  |  |  |  |
| CO-TE-CTV-240 |  | Installation of CCTV, Telephone, ACS and MSN Systems Cables for Alignment-RD-03-2 | 3d | 2027-05-04 | 2027-05-06 | ENG-SH-MSN-A-120, ENG-SH-CTV-A-110, ENG-MS-CTV-A-110, ENG-MT-CTV-A-100, PRO-CTV-1DL-100, MS-CS-TE SS, MS-MM-130, MS-MM-140, CO-TE-MH-190, PRO-R25-TE-DL-110, CO-TE-MH-180, ENG-SH-TE-A-110, ENG-MS-TE-A-110, ENG-MT-TE-A-110, PRO-TE-1DL-110, CO-TE-MH-170, ENG-MT-TE-A-100, PRO-TE-1DL-100, CO-SD-MH-380, CO-SD-ML-250, CO-MV-ML-390, CON-LV-ML-240, CON-LV-HC-240, CO-EW-240, CON-LV-DP-240, CO-SL-LP-520, CO-SL-CL-390, CO-SD-MH-260, CO-SD-ML-160, CO-SD-CB-200, CO-SW-MH-250, CO-SW-ML-160, CO-PW-ML-160, CO-PW-VC-250, CO-PW-FH-190, CO-IR-ML-180, CO-MV-ML-300, CON-LV-ML-150, CON-LV-HC-150, CO-SL-LP-380, CO-SL-CL-300, CO-EW-210_R, PRO-LV-DP-1DL-100, PRO-LV-DP-DL-100, CON-LV-DP-130, PRO-R25-SL-DL-160 SS, ENG-MT-SL-DB-A-100, MS-CS-SL SS, PRO-R25-SD-DL-110, PRO-R25-SD-DL-130, PRO-SD-1DL-130, PRO-SD-1DL-120, CO-SD-CB-190, ENG-MT-SD-CB-A-110, ENG-SH-SD-CB-A-110, ENG-MS-SD-CB-A-110, MS-CS-SD SS, CO-SD-CB-180, CO-SW-MH-240, CO-SW-MH-230, PRO-SW-1DL-110, PRO-R25-SW-DL-110, CO-SW-MH-220, ENG-MT-SW-ML-A-100, ENG-SH-SW-ML-A-110, MS-CS-SW SS, ENG-MS-SW-ML-A-110, CO-SW-MH-210, PRO-SW-1DL-100, PRO-R25-SW-DL-100, CO-SW-ML-150, ENG-MT-SW-ML-A-110, CO-SW-ML-140, CO-IR-ML-190, ENG-MT-IR-ML-A-110, PRO-IR-1DL-110, PRO-R25-IR-DL-110, CO-IR-ML-170, PRO-IR-1DL-100, PRO-R25-IR-DL-100, CO-IR-ML-160, ENG-SH-IR-ML-A-110, ENG-MS-IR-ML-A-110, ENG-MT-IR-ML-A-100, MS-CS-IR SS, CO-IR-ML-150, CO-SL-LP-370, PRO-R25-SL-DL-160, PRO-R25-CTV-DL-100, CO-TE-CTV-150 | -84d | 0d | Skilled Labor [40 h]; Unskilled Labor [80 h]; Electrician [40 h]; NVR Server with RAID (5, 6 or 10) to record all cameras storage 80TB with all hardware / software / licenses etc. [0.24]; VMS Server with RAID (5, 6 or 10) complete Hardware / Software with one Color Laser Printer and all associated accessories for central management. [0.24]; Licenses for Cameras, Workstations and Keyboards [0.12]; Work Station (MMI with two monitors each, for Monitoring for CCTV & ACS) [0.12]; Keyboard with joystick for CCTV with all accessories as per specification [0.12]; Pole mounted IP( PoE) Fixed camera, 5MP,IP 66, IR illumination, 3-8mm varifocal, auto iris lens type [4.78]; Wall mounted IP( PoE) Fixed camera, 5MP,IP 66, IR illumination, 3-8mm varifocal, auto iris lens type [5.85]; 5MP Dome camera ceiling Mounted IP (PoE) indoor [2.03]; 5MP PTZ Multi Sensor Camera IP(PoE) 360 Degree View Outdoor with accessories (IP 66) [0.84]; 8 Port Industrial PoE Switch 10/100BaseT (0 deg to +70 deg. Celsius) [1.31]; Filed Equipment cabinet (FEC), with fan and ventilation, NEMEX 4X ,door, minimum size (600x600x400mm), the cabinet/enclosure includes industrial switch and UPS. [1.31]; IP Phone Communication server (hot standby) 50 Port equipped, Gateway, Gatekeeper, H.323, SIP, redundant Power etc. [0.36]; IP Phone Voice gateway [0.12]; Voice IP Phone [0.12]; NMS Server for IP phone and NETWORK Elements [0.12]; NMS Workstation [0.12]; Firm Ware, software & licenses [0.12]; Data Cable [0.12]; Power Cable [0.12]; Layer 3, 24 Port non-PoE switch10/1000BaseT/LX (-40 deg to +70 deg. Celsius), stack module and associated accessories for utility Telecom Server room [0.24]; Layer 2, 24 Port non-PoE switch10/1000BaseT (-40 deg to +70 deg. Celsius), stack module and associated accessories for utility Telecom Server and Security Guard house room [0.72]; Network Management System Server [0.24]; Network Management System workstation [0.12]; 42U rack dimension (W x H x L) 800 x 2000 x 1000 mm [0.24]; 12U rack dimension (W x H x L) 600 x 625 x 600 mm [0.12]; 06C Optical Fiber SM [217.31]; 48C Optical Fiber SM [692.54]; 48 Core Splice Closure [0.84]; Optical fiber patch cord 5m [2.87]; Data Cable (STP CAT 6A) [1232.24]; 3C Power Cable armored 1.5mm2 [1232.24]; 3C Power Cable armored 2.5 mm2 [1232.24]; UTP CAT6A Patch Cord 1m/3m/5m [2.75]; Access Control Unit [0.6]; Access Card Reader [0.6]; Magnetic Lock [0.6]; Break Glass [0.48]; Exit Push button [0.6]; Door Sensor [0.6]; Biometrics Reader [0.96]; Smart Card Printer [0.12]; Card Issue Work Station [0.12]; Photographic Camera with stand [0.12]; Interface modules with CCTV, Fire and other systems [0.12]; 1-ways ducts, 6 x 50mm diameter [60.9]; 6 PVC ducts 150x200 mm (60mm diameter) [13.73] | 252,035.65 | CTV |  |
|  | RD | **Road Works** |  | 2027-05-11 | 2027-06-28 |  |  |  |  |  |  |  |
|  | RD | **Pre-Bituminous Construction** |  | 2027-05-11 | 2027-05-27 |  |  |  |  |  |  |  |
| CO-RD-PB-220 |  | Subgrade Layer for Road Works for Alignment-RD-03-2 | 5d | 2027-05-11 | 2027-05-22 | CO-SD-CB-200, PRO-R25-SD-DL-110, PRO-R25-SD-DL-130, PRO-SD-1DL-130, PRO-SD-1DL-120, CO-SD-CB-190, ENG-MT-SD-CB-A-110, ENG-SH-SD-CB-A-110, ENG-MS-SD-CB-A-110, MS-CS-SD SS, CO-SD-CB-180, CO-SW-MH-250, CO-SW-MH-240, CO-SW-MH-230, PRO-SW-1DL-110, PRO-R25-SW-DL-110, CO-SW-MH-220, ENG-MT-SW-ML-A-100, ENG-SH-SW-ML-A-110, MS-CS-SW SS, ENG-MS-SW-ML-A-110, CO-SW-MH-210, CO-SW-ML-160, PRO-SW-1DL-100, PRO-R25-SW-DL-100, CO-SW-ML-150, ENG-MT-SW-ML-A-110, CO-SW-ML-140, CO-IR-ML-180, CO-IR-ML-190, ENG-MT-IR-ML-A-110, PRO-IR-1DL-110, PRO-R25-IR-DL-110, CO-IR-ML-170, PRO-IR-1DL-100, PRO-R25-IR-DL-100, CO-IR-ML-160, ENG-SH-IR-ML-A-110, ENG-MS-IR-ML-A-110, ENG-MT-IR-ML-A-100, MS-CS-IR SS, CO-IR-ML-150, CO-TE-DW-160, CO-TE-DW-150, PRO-R25-TE-DL-100, ENG-SH-TE-A-110, ENG-MS-TE-A-110, ENG-MT-TE-A-100, PRO-TE-1DL-100, MS-CS-TE SS, CO-SL-LP-520, CO-SD-MH-260, CO-SD-ML-160, CO-PW-ML-160, CO-PW-VC-250, CO-PW-FH-190, CO-MV-ML-300, CON-LV-ML-150, CON-LV-HC-150, CO-SL-LP-380, CO-SL-CL-300, CO-EW-210_R, PRO-LV-DP-1DL-100, PRO-LV-DP-DL-100, CON-LV-DP-130, PRO-R25-SL-DL-160 SS, ENG-MT-SL-DB-A-100, MS-CS-SL SS, CO-SL-LP-370, PRO-R25-SL-DL-160, CO-TE-MH-190, PRO-R25-TE-DL-110, CO-TE-MH-180, ENG-MT-TE-A-110, PRO-TE-1DL-110, CO-TE-MH-170, CO-EW-240, CO-SD-ML-250, CO-SD-MH-380, CO-MV-ML-390, ENG-MS-RD-A-20, ENG-MS-RD-A-30, ENG-MS-RD-A-40, PRO-R25-RD-DL-100, CON-LV-HC-240, CON-LV-ML-240, ENG-MS-RD-A-10, ENG-SH-RD-A-100, ENG-SH-RD-A-110, MS-CS-RD SS, PRO-RD-1DL-100, MS-MM-130, MS-MM-140, CON-LV-DP-240, CO-SL-CL-390, CO-SL-TF-530 | -107d | 0d | Skilled Labor [48 h]; Unskilled Labor [48 h]; Water Tanker [48 h]; Grader [48 h]; Loader [48 h]; Compactor [48 h]; Subgrade [4572.58] | 146,196.42 | RD |  |
| CO-RD-PB-230 |  | Installation of Aggregate Base Course Layer and Interlock Works for Road Works for Alignment-RD-03-2 | 5d | 2027-05-23 | 2027-05-27 | CO-RD-PB-220, PRO-R25-RD-DL-110, PRO-RD-1DL-110 | -107d | 0d | Pavement Labor [240 h]; Water Tanker [40 h]; Grader [40 h]; Loader [40 h]; Compactor [40 h]; Aggregate base course [2286.28] | 153,502.68 | RD |  |

| ID | WBS | Activity | Duration | Start | Finish | Predecessors | Total float | Free float | Resources | Cost | 01- Network | Activity ID N |
| --- | --- | --- | --- | --- | --- | --- | --- | --- | --- | --- | --- | --- |
|  | 1 | **Bituminous Construction** |  | 2027-05-29 | 2027-06-21 |  |  |  |  |  |  |  |
| CO-RD-B-240 |  | Bituminous Base Courses Layers for Road Works for Alignment-RD-03-2 | 3d | 2027-05-29 | 2027-05-31 | PRO-R25-RD-DL-100, PRO-RD-1DL-100, MS-MM-140, MS-MM-130, MS-CS-RD SS, ENG-SH-RD-A-100, ENG-SH-RD-A-110, ENG-MS-RD-A-30, ENG-MS-RD-A-20, ENG-MS-RD-A-10, ENG-MS-RD-A-40, CO-TE-MH-190, CO-TE-DW-160, CO-SL-CL-300, CO-SL-LP-380, CON-LV-HC-150, CON-LV-ML-150, CO-MV-ML-300, CO-IR-ML-180, CO-PW-FH-190, CO-PW-VC-250, CO-PW-ML-160, CO-TSE-ML-230, CO-SW-ML-160, CO-SW-MH-250, CO-SD-CB-200, CO-SD-ML-160, CO-SD-MH-260, CO-EW-210_R, CO-SL-LP-520, PRO-R25-RD-DL-160, PRO-R25-RD-DL-160 FF, CO-RD-PB-230 SS, CO-RD-PB-230, CO-RD-PB-230 FF, PRO-RD-1DL-120, PRO-RD-1DL-120 FF, PRO-R25-RD-DL-100 FF, PRO-RD-1DL-100 FF, MS-MM-140 FF, MS-MM-130 FF, ENG-SH-RD-A-100 FF, ENG-SH-RD-A-110 FF, ENG-MS-RD-A-30 FF, ENG-MS-RD-A-20 FF, ENG-MS-RD-A-10 FF, ENG-MS-RD-A-40 FF, CO-TE-MH-190 FF, CO-TE-DW-160 FF, CO-SL-CL-300 FF, CO-SL-LP-380 FF, CON-LV-HC-150 FF, CON-LV-ML-150 FF, CO-MV-ML-300 FF, CO-IR-ML-180 FF, CO-PW-FH-190 FF, CO-PW-VC-250 FF, CO-PW-ML-160 FF, CO-TSE-ML-230 FF, CO-SW-ML-160 FF, CO-SW-MH-250 FF, CO-SD-CB-200 FF, CO-SD-ML-160 FF, CO-SD-MH-260 FF, CO-EW-210_R FF, CO-SL-LP-520 FF, PRO-R25-RD-DL-170, PRO-RD-1DL-130 | -107d | 0d | Unskilled Labor [48 h]; Asphalt Cutter [24 h]; Asphalt Paver [24 h]; Bituminous base course (Grading I - Class A), including Prime Coat (MC1) [762.6] | 308,669.07 | RD |  |
| CON-RD-MR-230 |  | Preparation of Asphaltic Wearing Course Layer for Roads Network for Alignment-RD-03-2 | 3d | 2027-06-19 | 2027-06-21 | PRO-RD-1DL-190, PRO-RD-1DL-190 FF, PRO-RD-DL-210, PRO-RD-DL-210 FF, CO-RD-B-240 SS, CO-RD-B-240, CO-RD-B-240 FF, CO-SD-CB-TF-260, CO-SD-CB-TF-260 FF, CO-SD-MH-TF-290, CO-SD-MH-TF-290 FF, CO-TE-CTV-TF-320, CO-TE-CTV-TF-320 FF, CO-SD-MH-380, CO-SD-MH-380 FF, PRO-SD-1DL-140, PRO-SD-1DL-140 FF, PRO-R25-SD-DL-140, PRO-R25-SD-DL-140 FF, CO-SD-MH-260, CO-SD-MH-260 FF, PRO-R25-RD-DL-170, PRO-R25-RD-DL-170 FF, PRO-RD-1DL-130, PRO-RD-1DL-130 FF, PRO-R25-RD-DL-100, PRO-R25-RD-DL-100 FF, PRO-RD-1DL-100, PRO-RD-1DL-100 FF, MS-MM-140, MS-MM-140 FF, MS-MM-130, MS-MM-130 FF, MS-CS-RD SS, ENG-SH-RD-A-100, ENG-SH-RD-A-100 FF, ENG-SH-RD-A-110, ENG-SH-RD-A-110 FF, ENG-MS-RD-A-30, ENG-MS-RD-A-30 FF, ENG-MS-RD-A-20, ENG-MS-RD-A-20 FF, ENG-MS-RD-A-10, ENG-MS-RD-A-10 FF, ENG-MS-RD-A-40, ENG-MS-RD-A-40 FF, CO-TE-MH-190, CO-TE-MH-190 FF, CO-TE-DW-160, CO-TE-DW-160 FF, CO-SL-CL-300, CO-SL-CL-300 FF, CO-SL-LP-380, CO-SL-LP-380 FF, CON-LV-HC-150, CON-LV-HC-150 FF, CON-LV-ML-150, CON-LV-ML-150 FF, CO-MV-ML-300, CO-MV-ML-300 FF, CO-IR-ML-180, CO-IR-ML-180 FF, CO-PW-FH-190, CO-PW-FH-190 FF, CO-PW-VC-250, CO-PW-VC-250 FF, CO-PW-ML-160, CO-PW-ML-160 FF, CO-TSE-ML-230, CO-TSE-ML-230 FF, CO-SW-ML-160, CO-SW-ML-160 FF, CO-SW-MH-250, CO-SW-MH-250 FF, CO-SD-CB-200, CO-SD-CB-200 FF, CO-SD-ML-160, CO-SD-ML-160 FF, CO-EW-210_R, CO-EW-210_R FF, CO-SL-LP-520, CO-SL-LP-520 FF, CO-SD-CB-TF-190, CO-SD-CB-TF-190 FF, PRO-R25-SD-DL-110, PRO-R25-SD-DL-110 FF, PRO-R25-SD-DL-130, PRO-R25-SD-DL-130 FF, PRO-SD-1DL-130, PRO-SD-1DL-130 FF, PRO-SD-1DL-120, PRO-SD-1DL-120 FF, CO-SD-CB-190, CO-SD-CB-190 FF, ENG-MT-SD-CB-A-110, ENG-MT-SD-CB-A-110 FF, ENG-SH-SD-CB-A-110, ENG-SH-SD-CB-A-110 FF, ENG-MS-SD-CB-A-110, ENG-MS-SD-CB-A-110 FF, MS-CS-SD SS, CO-SD-ML-250, CO-SD-ML-250 FF, CO-SD-CB-180, CO-SD-CB-180 FF, CO-SD-PO-110-P1, CO-SD-PO-110-P1 FF, CO-SD-PO-110-P2, CO-SD-PO-110-P2 FF, CO-SD-ML-TF-110, CO-SD-ML-TF-110 FF, CO-SW-MH-240, CO-SW-MH-240 FF, CO-SW-MH-230, CO-SW-MH-230 FF, PRO-SW-1DL-110, PRO-SW-1DL-110 FF, PRO-R25-SW-DL-110, PRO-R25-SW-DL-110 FF, CO-SW-MH-220, CO-SW-MH-220 FF, ENG-MT-SW-ML-A-100, ENG-MT-SW-ML-A-100 FF, ENG-SH-SW-ML-A-110, ENG-SH-SW-ML-A-110 FF, MS-CS-SW SS, CO-EW-240, CO-EW-240 FF, ENG-MS-SW-ML-A-110, ENG-MS-SW-ML-A-110 FF, CO-SW-MH-210, CO-SW-MH-210 FF, PRO-SW-1DL-100, PRO-SW-1DL-100 FF, PRO-R25-SW-DL-100, PRO-R25-SW-DL-100 FF, CO-SW-ML-150, CO-SW-ML-150 FF, ENG-MT-SW-ML-A-110, ENG-MT-SW-ML-A-110 FF, CO-SW-ML-140, CO-SW-ML-140 FF, CO-SW-TF-230, CO-SW-TF-230 FF, CO-SW-TF-250, CO-SW-TF-250 FF, CO-IR-TF-170, CO-IR-TF-170 FF, CO-IR-ML-190, CO-IR-ML-190 FF, ENG-MT-IR-ML-A-110, ENG-MT-IR-ML-A-110 FF, PRO-IR-1DL-110, PRO-IR-1DL-110 FF, PRO-R25-IR-DL-110, PRO-R25-IR-DL-110 FF, CO-IR-ML-170, CO-IR-ML-170 FF, PRO-IR-1DL-100, PRO-IR-1DL-100 FF, PRO-R25-IR-DL-100, PRO-R25-IR-DL-100 FF, CO-IR-ML-160, CO-IR-ML-160 FF, ENG-SH-IR-ML-A-110, ENG-SH-IR-ML-A-110 FF, ENG-MS-IR-ML-A-110, ENG-MS-IR-ML-A-110 FF, ENG-MT-IR-ML-A-100, ENG-MT-IR-ML-A-100 FF, MS-CS-IR SS, CO-IR-ML-150, CO-IR-ML-150 FF, CO-TE-CTV-TF-180, CO-TE-CTV-TF-180 FF, CO-TE-CTV-TF-310, CO-TE-CTV-TF-310 FF, CO-TE-CTV-240, CO-TE-CTV-240 FF, CO-TE-CTV-150 SS, PRO-RD-DL-200, PRO-RD-1DL-180 | -111d | 0d | Unskilled Labor [48 h]; Asphalt Cutter [24 h]; Asphalt Paver [24 h]; Bituminous concrete wearing course, (Grading I - Class A), including tack coat (RC2) [762.6] | 311,596.76 | RD |  |
|  | LS | **Pavement Works** |  | 2027-06-01 | 2027-06-16 |  |  |  |  |  |  |  |
| CO-RD-PV-240 |  | Fixing of Curbstone for Sidewalks Pavement for Alignment-RD-03-2 | 7d | 2027-06-01 | 2027-06-08 | ENG-MS-HS-A-10, PRO-R25-RD-DL-130, PRO-RD-1DL-150, CO-RD-B-240, CO-RD-PV-180 | -107d | 0d | Pavement Labor [352 h]; Bobcat [88 h]; JCB [88 h]; Precast Concrete Curbstone 150X300X900 Type (K1-A) [2157.37]; Precast Concrete Curbstone 100X200X500 Type (K4) [846.66]; Precast Concrete Curbstone 150X300X500 Type (K1-B) [186.79]; Precast Concrete Curbstone Type (K1-C) [13.07]; Flush Kerb Type (D) [23.66] | 103,192.59 | RD |  |
| CO-RD-PV-250 |  | Fixing of Interlock Tiles for Sidewalks Pavement for Alignment-RD-03-2 | 7d | 2027-06-09 | 2027-06-16 | ENG-MS-HS-A-10, PRO-R25-RD-DL-120, PRO-RD-1DL-140, CO-RD-PV-240, CO-RD-PV-190 | -107d | 4d | Pavement Labor [864 h]; Bobcat [144 h]; JCB [144 h]; 60mm thick [1499.18]; 80mm thick | 66,143.03 | RD |  |
|  | TS | **Traffic Signs Boards and Roads Marking** |  | 2027-06-22 | 2027-06-28 |  |  |  |  |  |  |  |
| CO-RD-F-RM-220 |  | Application of Road Marking Works For Road Works for Alignment-RD-03-2 | 3d | 2027-06-22 | 2027-06-24 | CO-RD-PV-250, ENG-MS-MRK-A-10, PRO-R25-RD-DL-150, ENG-SH-MRK-A-110, PRO-RD-1DL-170, CO-RD-PV-240, CON-RD-MR-230, CO-RD-F-RM-190 | -111d | 0d | Skilled Labor [24 h]; Road Painter [24 h]; Retroreflective Thermoplastic White Traffic lines [189.9]; Retroreflective Thermoplastic Yellow, Traffic lines [285.99]; Precast Concrete Blister Warning Tactile Paver Brown Finish 300*300*60mm [4.79] | 13,957.93 | RD |  |
| CO-RD-F-TS-160 |  | Installation Works of Traffic Signs Boards For Road Works for Alignment-RD-03-2 | 3d | 2027-06-26 | 2027-06-28 | CO-RD-F-RM-220, ENG-MS-TSB-A-10, PRO-R25-RD-DL-140, ENG-SH-TSB-A-100, PRO-RD-1DL-160, CO-RD-F-TS-130 | -111d | 0d | Unskilled Labor [48 h]; Traffic signs, ground mounted, Sheet Aluminum, (breakaway) Single post IPE, with all accessories [11.94] | 7,574 | RD |  |
|  | 3 | **Finishes for Infrastructure Networks** |  | 2027-03-16 | 2027-06-17 |  |  |  |  |  |  |  |
|  | 11 | **Storm Drainage Network** |  | 2027-05-31 | 2027-06-17 |  |  |  |  |  |  |  |
|  | TF | **Testing and Finishes** |  | 2027-05-31 | 2027-06-17 |  |  |  |  |  |  |  |
| CO-SD-MH-TF-290 |  | Testing Works for Manholes of Storm Drainage Network for Alignment-RD-03-2 | 6d | 2027-05-31 | 2027-06-06 | PRO-SD-1DL-140, PRO-R25-SD-DL-140, CO-SD-MH-260, PRO-R25-RD-DL-170, PRO-RD-1DL-130, PRO-R25-RD-DL-100, PRO-RD-1DL-100, MS-MM-140, MS-MM-130, MS-CS-RD SS, ENG-SH-RD-A-100, ENG-SH-RD-A-110, ENG-MS-RD-A-30, ENG-MS-RD-A-20, ENG-MS-RD-A-10, ENG-MS-RD-A-40, CO-TE-MH-190, CO-TE-DW-160, CO-SL-CL-300, CO-SL-LP-380, CON-LV-HC-150, CON-LV-ML-150, CO-MV-ML-300, CO-IR-ML-180, CO-PW-FH-190, CO-PW-VC-250, CO-PW-ML-160, CO-TSE-ML-230, CO-SW-ML-160, CO-SW-MH-250, CO-SD-CB-200, CO-SD-ML-160, CO-EW-210_R, CO-SL-LP-520, CO-SD-ML-250, CO-SD-PO-110-P1, CO-SD-PO-110-P2, CO-SD-ML-TF-110, CO-SD-MH-380, CO-SD-MH-TF-230 | -101d | 10d | Skilled Labor [48 h]; Plumber [48 h]; MH depth 1.5 - 2.5m [2.24]; MH depth 2.5 - 3.5m [1.49]; MH depth 3.5 - 4.5m [1.12]; MH depth > 4.50m [0.37]; MH depth 2.5 -3.5m; MH depth > 3.50m | 54,552.58 | SD | CO-R26.S11-SD-210 |
| CO-SD-CB-TF-260 |  | Testing Works for Catch Basins of Storm Drainage Network for Alignment-RD-03-2 | 9d | 2027-06-08 | 2027-06-17 | CO-SD-CB-200, PRO-R25-SD-DL-110, PRO-R25-SD-DL-130, PRO-SD-1DL-130, PRO-SD-1DL-120, CO-SD-CB-190, ENG-MT-SD-CB-A-110, ENG-SH-SD-CB-A-110, ENG-MS-SD-CB-A-110, MS-CS-SD SS, CO-SD-ML-250, MS-MM-130, MS-MM-140, CO-SD-CB-180, CO-SD-CB-TF-190, CO-SD-MH-380, PRO-SD-1DL-140, PRO-R25-SD-DL-140, CO-SD-MH-260, PRO-R25-RD-DL-170, PRO-RD-1DL-130, PRO-R25-RD-DL-100, PRO-RD-1DL-100, MS-CS-RD SS, ENG-SH-RD-A-100, ENG-SH-RD-A-110, ENG-MS-RD-A-30, ENG-MS-RD-A-20, ENG-MS-RD-A-10, ENG-MS-RD-A-40, CO-TE-MH-190, CO-TE-DW-160, CO-SL-CL-300, CO-SL-LP-380, CON-LV-HC-150, CON-LV-ML-150, CO-MV-ML-300, CO-IR-ML-180, CO-PW-FH-190, CO-PW-VC-250, CO-PW-ML-160, CO-TSE-ML-230, CO-SW-ML-160, CO-SW-MH-250, CO-SD-ML-160, CO-EW-210_R, CO-SL-LP-520, CO-SD-PO-110-P1, CO-SD-PO-110-P2, CO-SD-ML-TF-110, CO-SD-CB-TF-170 | -111d | 0d | Skilled Labor [216 h]; Plumber [216 h]; Depth Between 0m to 1.50m; Depth Between 1.50m to 2.50m; Depth Between 2.50m to 3.50m; Depth > 3.50m; Depth Between 2.50m to 3.50m [26.58]; Depth Between 3.50m to 4.50m [26.87]; Depth > 4.50m; Depth Between 0m to 1.50m [8.36]; Depth Between 1.50m to 2.50m [8.66]; Depth Between 2.50m to 3.50m [47.76]; Depth Between 3.50m to 4.50m; GRP Pipe, 900mm diameter with Depth Between 3.51m to 4.50m; Single Catch Basin 1000mm x 1000mm; Double Catch Basin 1200mm x 2300mm | 55,312.66 | SD |  |
|  | 10 | **Sewage Network** |  |  |  |  |  |  |  |  |  |  |
|  | TF | **Testing and Finishes** |  |  |  |  |  |  |  |  |  |  |
|  | 13 | **Irrigation Network** |  |  |  |  |  |  |  |  |  |  |
|  | TF | **Testing and Finishes** |  |  |  |  |  |  |  |  |  |  |
|  | 14 | **Medium Voltage Network** |  | 2027-03-16 | 2027-03-22 |  |  |  |  |  |  |  |
|  | TT | **Termination and Testing Works** |  | 2027-03-16 | 2027-03-22 |  |  |  |  |  |  |  |
| CO-MV-TF-260 |  | Testing and Termination Works of Medium Voltage Network for Alignment-RD-03-2 | 6d | 2027-03-16 | 2027-03-22 | CO-MV-ML-390, CO-MV-TF-230 | -52d | 24d | Skilled Labor [48 h]; Electrician [48 h]; Duct bank for (33) cables; Duct bank for (21) cables; Duct bank for (15) cables [6.45]; HV Cable Road Crossing [0.96] | 4,982.19 | MV |  |
|  | 6 | **Low Voltage Network** |  | 2027-04-20 | 2027-05-11 |  |  |  |  |  |  |  |
|  | TT | **Termination and Testing Works** |  | 2027-04-20 | 2027-05-11 |  |  |  |  |  |  |  |
| CON-LV-TT-190 |  | Testing and Termination Works for Distribution Pillars Units of Low Voltage Network for Alignment-RD-03-2 | 6d | 2027-04-20 | 2027-04-26 | CO-MV-TF-230, PRO-LV-DP-1DL-100, PRO-LV-DP-DL-100, CON-LV-DP-130, PRO-LV-TT-1DL-100, PRO-LV-TT-DL-100, CON-LV-DP-240, CO-MV-TF-260 | -68d | 0d | Skilled Labor [32 h]; Electrician [32 h]; Supply and installation of KWH meter mounting frame including concrete block for installation of KWH meter according to the standards and specifications of SEC. [0.3] | 358.66 | LV |  |
| CON-LV-TT-180 |  | Testing and Termination Works for Substation Low Voltage Panel Boards of Low Voltage Network for Alignment-RD-03-2 | 7d | 2027-05-04 | 2027-05-11 | CON-LV-TT-190, PRO-LV-TT-1DL-100, PRO-LV-TT-DL-100, CON-LV-HC-240, CON-LV-ML-240, CON-LV-TT-120 | -74d | 8d | Skilled Labor [96 h]; Electrician [96 h]; 4C-300mm2 CU/XLPE / PVC ARMORED CABLE [3.76]; 4C-240mm2 CU/XLPE / PVC ARMORED CABLE [2.15]; 4C-185mm2 CU/XLPE / PVC ARMORED CABLE [2.15]; 4C-50mm2 CU/XLPE / PVC ARMORED CABLE [8.06]; 4C-16mm2 CU/XLPE / PVC ARMORED CABLE [185.64]; 4C-16MM2 CU/XLPE / PVC CABLE [74.96]; 1Cx150sq.mm2,Cu, PVC wire [3.76]; 1Cx120sq.mm2,Cu, PVC wire [4.84]; 1Cx95sq.mm,Cu, PVC wire [2.15]; 1Cx70sq.mm2,Cu, PVC wire [1.07]; 1Cx25sq.mm2,Cu, PVC wire [4.84]; 1Cx16sq.mm2,Cu, PVC wire [185.64]; 1Cx10sq.mm2,Cu, PVC wire [1.61] | 16,908.4 | LV |  |

| ID | WBS | Activity | Duration | Start | Finish | Predecessors | Total float | Free float | Resources | Cost | 01- Network | Activity ID N |
| --- | --- | --- | --- | --- | --- | --- | --- | --- | --- | --- | --- | --- |
|  | 1 | **Earthing System Works** |  | 2027-04-27 | 2027-04-28 |  |  |  |  |  |  |  |
| CON-LV-ES-140 |  | Earthing System Works for Distribution Pillars Units of Low Voltage Network for Alignment-RD-03-2 | 2d | 2027-04-27 | 2027-04-28 | PRO-LV-DP-1DL-100, PRO-LV-DP-DL-100, CON-LV-DP-130, PRO-LV-TT-1DL-100, PRO-LV-TT-DL-100, CO-MV-TF-230, CON-LV-TT-190, PRO-LV-DP-1DL-110, PRO-LV-DP-DL-120, CON-LV-DP-240 | -63d | 19d | Skilled Labor [16 h]; Electrician [16 h]; Supply and installation of KWH meter mounting frame including concrete block for installation of KWH meter according to the standards and specifications of SEC. [0.15] | 179.33 | LV |  |
|  | 12 | **Street Lighting Network** |  | 2027-04-19 | 2027-05-10 |  |  |  |  |  |  |  |
|  | TR | **Termination and Testing Works** |  | 2027-04-19 | 2027-05-10 |  |  |  |  |  |  |  |
| CO-SL-LP-530 |  | Installation Works for Lighting Fixtures With Drop Wire of Street Lighting Network for Alignment-RD-03-2 | 6d | 2027-04-19 | 2027-04-25 | PRO-R25-SL-DL-160, CO-SL-CL-390, ENG-MT-SL-DB-A-100, MS-CS-SL SS, MS-MM-130, MS-MM-140, CO-EW-240, ENG-MT-SL-A-120, PRO-R25-SL-DL-140, CO-SL-LP-520, CO-SL-LP-370 | -100d | 0d | Unskilled Labor [48 h]; Electrician [48 h]; Man Left [48 h]; Street Lighting( LED) Luminaire of Output ? 20,965 lumen complete with control gear and lamp, (129.1) WATT. [26.87] | 10,547.82 | SL |  |
| CO-SL-TF-530 |  | Testing Works for Lighting Poles of Street Lighting Network for Alignment-RD-03-2 | 6d | 2027-05-04 | 2027-05-10 | PRO-R25-SL-DL-160, CO-SL-LP-520, CO-SL-CL-390, ENG-MT-SL-DB-A-100, MS-CS-SL SS, MS-MM-130, MS-MM-140, CO-EW-240, CO-SL-LP-530, PRO-R25-SL-DL-130 | -107d | 0d | Unskilled Labor [48 h]; Electrician [48 h]; Lighting poles with 1 arm, height of (12) meters, including the power distribution box, cables, and RCC foundation. [4.03]; Lighting poles with 2 arms, height of (12) meters, including the power distribution box, cables, and RCC foundation. | 9,709.52 | SL | CO-R26.S11-SL-200 |
|  | ES | **Earthing System Works** |  | 2027-05-04 | 2027-05-09 |  |  |  |  |  |  |  |
| CO-SL-ES-300 |  | Install Earthing System Works for Lighting Poles of Street Lighting Network for Alignment-RD-03-2 | 3d | 2027-05-04 | 2027-05-06 | CO-SL-LP-530, ENG-MT-SL-ES-A-100, PRO-R25-SL-DL-150 | -72d | 0d | Unskilled Labor [48 h]; Electrician [24 h]; JCB [24 h]; Including earthing of lighting poles, masts, feeder pillars, unit substations and LV feeders. [10.45] | 1,202.53 | SL |  |
| CO-SL-ES-310 |  | Install Earthing System Works for Lighting Panel Boards of Street Lighting Network for Alignment-RD-03-2 | 2d | 2027-05-08 | 2027-05-09 | CO-SL-ES-300, PRO-R25-SL-DL-150 | -72d | 14d | Unskilled Labor [32 h]; Electrician [16 h]; JCB [16 h]; Including earthing of lighting poles, masts, feeder pillars, unit substations and LV feeders. [10.45] | 1,202.53 | SL |  |
|  | 3 | **Telecom and Light Current Network** |  | 2027-05-08 | 2027-05-11 |  |  |  |  |  |  |  |
|  | 1 | **Testing and Finishes** |  | 2027-05-08 | 2027-05-11 |  |  |  |  |  |  |  |
| CO-TE-CTV-TF-320 |  | Testing and Interface modules with CCTV, Telephone, MSN and Access Control for Alignment-RD-03-2 | 4d | 2027-05-08 | 2027-05-11 | CO-TE-CTV-240, CO-TE-CTV-150 SS, CO-TE-CTV-TF-180, CO-TE-CTV-TF-310 | -84d | 7d | Skilled Labor [48 h]; Electrician [48 h]; NVR Server with RAID (5, 6 or 10) to record all cameras storage 80TB with all hardware / software / licenses etc. [0.06]; VMS Server with RAID (5, 6 or 10) complete Hardware / Software with one Color Laser Printer and all associated accessories for central management. [0.06]; Licenses for Cameras, Workstations and Keyboards [0.03]; Work Station (MMI with two monitors each, for Monitoring for CCTV & ACS) [0.03]; Keyboard with joystick for CCTV with all accessories as per specification [0.03]; Pole mounted IP( PoE) Fixed camera, 5MP,IP 66, IR illumination, 3-8mm varifocal, auto iris lens type [1.19]; Wall mounted IP( PoE) Fixed camera, 5MP,IP 66, IR illumination, 3-8mm varifocal, auto iris lens type [1.46]; 5MP Dome camera ceiling Mounted IP (PoE) indoor [0.51]; 5MP PTZ Multi Sensor Camera IP(PoE) 360 Degree View Outdoor with accessories (IP 66) [0.21]; 8 Port Industrial PoE Switch 10/100BaseT (0 deg to +70 deg. Celsius) [0.33]; Filed Equipment cabinet (FEC), with fan and ventilation, NEMEX 4X ,door, minimum size (600x600x400mm), the cabinet/enclosure includes industrial switch and UPS. [0.33]; IP Phone Communication server (hot standby) 50 Port equipped, Gateway, Gatekeeper, H.323, SIP, redundant Power etc. [0.09]; IP Phone Voice gateway [0.03]; Voice IP Phone [0.03]; NMS Server for IP phone and NETWORK Elements [0.03]; NMS Workstation [0.03]; Firm Ware, software & licenses [0.03]; Data Cable [0.03]; Power Cable [0.03]; Layer 3, 24 Port non-PoE switch10/1000BaseT/LX (-40 deg to +70 deg. Celsius), stack module and associated accessories for utility Telecom Server room [0.06]; Layer 2, 24 Port non-PoE switch10/1000BaseT (-40 deg to +70 deg. Celsius), stack module and associated accessories for utility Telecom Server and Security Guard house room [0.18]; Network Management System Server [0.06]; Network Management System workstation [0.03]; 42U rack dimension (W x H x L) 800 x 2000 x 1000 mm [0.06]; 12U rack dimension (W x H x L) 600 x 625 x 600 mm [0.03]; 06C Optical Fiber SM [54.33]; 48C Optical Fiber SM [173.13]; 48 Core Splice Closure [0.21]; Optical fiber patch cord 5m [0.72]; Data Cable (STP CAT 6A) [308.06]; 3C Power Cable armored 1.5mm2 [308.06]; 3C Power Cable armored 2.5 mm2 [308.06]; UTP CAT6A Patch Cord 1m/3m/5m [0.69]; Access Control Unit [0.15]; Access Card Reader [0.15]; Magnetic Lock [0.15]; Break Glass [0.12]; Exit Push button [0.15]; Door Sensor [0.15]; Biometrics Reader [0.24]; Smart Card Printer [0.03]; Card Issue Work Station [0.03]; Photographic Camera with stand [0.03]; Interface modules with CCTV, Fire and other systems [0.03]; 1-ways ducts, 6 x 50mm diameter [15.22]; 6 PVC ducts 150x200 mm (60mm diameter) [3.43] | 63,008.91 | CTV |  |
|  | 4 | **Alignment-RD-03-3** |  | 2026-11-23 | 2027-05-31 |  |  |  |  |  |  |  |
|  | EW | **Earthworks** |  | 2026-11-23 | 2026-12-05 |  |  |  |  |  |  |  |
|  | EW | **Earthworks** |  | 2026-11-23 | 2026-12-05 |  |  |  |  |  |  |  |
| CO-EW-230 |  | Excavation and Backfilling Works Upto Design Level for Earthworks for Alignment-RD-03-3 | 11d | 2026-11-23 | 2026-12-05 | MS-CS-PS SS, MOB-30, MOB-20, MOB-80, MOB-40, MOB-50, MOB-60, MOB-10, MOB-70, PRE-CON-MDC-10, PRE-CON-MDC-20, PRE-CON-MDC-30, PRE-CON-MDC-40, PRE-CON-MDC-50, PRE-CON-MDC-60, PRE-CON-MDC-70, PRE-CON-MDC-80, MS-MM-100, MS-MM-130, MS-MM-140, MS-MM-150, CO-EW-200 | -115d | 0d | Skilled Labor [352 h]; Unskilled Labor [352 h]; Dozer [352 h]; Water Tanker [352 h]; Excavations (including Roads , Plots and Pond) [1851]; Embankments to the Site and Roads (including Roads , Plots and Pond) [31500] | 1,036,316.64 | FE |  |
|  | SD | **Storm Drainage Network** |  | 2026-12-23 | 2027-01-03 |  |  |  |  |  |  |  |
|  | MH | **Manholes** |  |  |  |  |  |  |  |  |  |  |
|  | ML | **Main Line Sections** |  | 2026-12-23 | 2027-01-03 |  |  |  |  |  |  |  |
| CO-SD-ML-200 |  | Trench Excavation and Bedding Works for Main Lines of Storm Drainage Network for Alignment-RD-03-3 | 3d | 2026-12-23 | 2026-12-26 | ENG-MT-SD-ML-A-100, ENG-MT-SD-ML-A-100 FF, CO-EW-230 FF, ENG-MS-SD-ML-A-110 FF, ENG-MT-SD-ML-A-110 FF, ENG-SH-SD-ML-A-110 FF, MS-MM-130 FF, MS-MM-140 FF, CO-SD-MH-180, CO-SD-MH-180 FF, PRO-SD-1DL-100, CO-SD-MH-200, PRO-R25-SD-DL-100, CO-SD-MH-190, CO-EW-230, ENG-SH-SD-ML-A-110, ENG-MS-SD-ML-A-110, ENG-MT-SD-ML-A-110, MS-CS-SD SS, MS-MM-130, MS-MM-140, CO-SD-ML-100 | -111d | 0d | Skilled Labor [24 h]; Unskilled Labor [24 h]; Excavator [24 h]; Depth Between 0m to 1.50m; Depth Between 1.50m to 2.50m; Depth Between 2.50m to 3.50m; Depth > 3.50m; Depth Between 1.50m to 2.50m [15.84]; Depth Between 3.50m to 4.50m; Depth > 4.50m; GRP Pipe, 900mm diameter with Depth Between 3.51m to 4.50m | 4,830.1 | SD |  |
| CO-SD-ML-210 |  | Pipes Laying Works for Main Lines of Storm Drainage Network for Alignment-RD-03-3 | 3d | 2026-12-27 | 2026-12-29 | PRO-SD-1DL-100, CO-SD-MH-200, PRO-R25-SD-DL-100, CO-SD-MH-190, ENG-MT-SD-ML-A-100, MS-CS-SD SS, CO-EW-230, ENG-MS-SD-ML-A-110, ENG-MT-SD-ML-A-110, ENG-SH-SD-ML-A-110, MS-MM-130, MS-MM-140, CO-SD-MH-180, CO-SD-ML-200, PRO-R25-SD-DL-120 FF, PRO-SD-1DL-110, CO-SD-ML-120 | -111d | 1d | Depth Between 0m to 1.50m; Depth Between 1.50m to 2.50m; Depth Between 2.50m to 3.50m; Depth Between 3.50m to 4.50m; Depth > 4.50m; Depth > 3.50m; GRP Pipe, 900mm diameter with Depth Between 3.51m to 4.50m; Skilled Labor [48 h]; Unskilled Labor [24 h]; Plumber [24 h]; Excavator [24 h]; Depth Between 1.50m to 2.50m [79.15] | 24,141.38 | SD |  |
| CO-SD-ML-220 |  | Trench Backfilling and Compaction Works for Main Lines of Storm Drainage Network for Alignment-RD-03-3 | 3d | 2026-12-31 | 2027-01-03 | CO-SD-MH-220 FF, PRO-SD-1DL-100 FF, CO-SD-MH-200 FF, PRO-R25-SD-DL-100 FF, CO-SD-MH-190 FF, ENG-MT-SD-ML-A-100 FF, CO-EW-230 FF, ENG-MS-SD-ML-A-110 FF, ENG-MT-SD-ML-A-110 FF, ENG-SH-SD-ML-A-110 FF, MS-MM-130 FF, MS-MM-140 FF, CO-SD-MH-180 FF, CO-SD-ML-210, CO-SD-ML-130 | -112d | 0d | Skilled Labor [24 h]; Water Tanker [24 h]; Loader [24 h]; Compactor [24 h]; Depth Between 0m to 1.50m; Depth Between 1.50m to 2.50m; Depth Between 2.50m to 3.50m; Depth > 3.50m; Depth Between 1.50m to 2.50m [31.66]; Depth Between 3.50m to 4.50m; Depth > 4.50m; GRP Pipe, 900mm diameter with Depth Between 3.51m to 4.50m | 9,655.64 | SD |  |
|  | CB | **Catch Basin Sections** |  |  |  |  |  |  |  |  |  |  |
|  | SW | **Sewage Network** |  |  |  |  |  |  |  |  |  |  |
|  | 1 | **Manholes** |  |  |  |  |  |  |  |  |  |  |
|  | ML | **Main Line Sections** |  |  |  |  |  |  |  |  |  |  |
|  | TSE | **Treated Sewage Effluent (Tse)** |  | 2027-01-04 | 2027-02-10 |  |  |  |  |  |  |  |
| CO-TSE-ML-300 |  | Trench Excavation and Bedding Works for Main Lines of Treated Sewage Effluent (Tse) for Alignment-RD-03-3 | 11d | 2027-01-04 | 2027-01-16 | PRO-SW-1DL-110 SS, ENG-MT-SW-ML-A-100, ENG-SH-SW-ML-A-110, MS-CS-SW SS, ENG-MS-SW-ML-A-110, CO-SD-MH-220, PRO-SD-1DL-100, CO-SD-MH-200, PRO-R25-SD-DL-100, CO-SD-MH-190, ENG-MT-SD-ML-A-100, MS-CS-SD SS, ENG-MS-SD-ML-A-110, ENG-MT-SD-ML-A-110, ENG-SH-SD-ML-A-110, CO-SD-MH-180, PRO-SW-1DL-100, ENG-MT-SW-ML-A-110, CO-SD-ML-220, ENG-SH-TSE-ML-A-120, ENG-MS-TSE-ML-A-120, ENG-MT-IR-ML-A-120, MS-CS-TSE SS, CO-EW-230, MS-MM-130, MS-MM-140 | -87d | 0d | Skilled Labor [32 h]; Unskilled Labor [32 h]; Excavator [32 h]; Depth Between 0m to 1.50m; Depth Between 1.50m to 2.50m; Depth > 2.50m; Depth Between 0m to 1.50m [10.45] | 754.95 | TSE |  |
| CO-TSE-ML-310 |  | Pipes Laying Works for Main Lines of Treated Sewage Effluent (Tse) for Alignment-RD-03-3 | 11d | 2027-01-17 | 2027-01-28 | CO-TSE-ML-300, PRO-TSE-1DL-120, PRO-R25-TSE-DL-120 | -87d | 0d | Skilled Labor [64 h]; Unskilled Labor [32 h]; Plumber [32 h]; Excavator [32 h]; Depth Between 0m to 1.50m; Depth Between 1.50m to 2.50m; Depth > 2.50m; Depth Between 0m to 1.50m [52.24] | 3,774.75 | TSE |  |
| CO-TSE-ML-330 |  | Trench Backfilling and Compaction Works for Treated Sewage Effluent (Tse) for Alignment-RD-03-3 | 11d | 2027-01-30 | 2027-02-10 | CO-TSE-ML-310 | -87d | 0d | Skilled Labor [40 h]; Water Tanker [40 h]; Loader [40 h]; Compactor [40 h]; Depth Between 0m to 1.50m; Depth Between 1.50m to 2.50m; Depth > 2.50m; Depth Between 0m to 1.50m [20.9] | 1,509.9 | TSE |  |

| ID | WBS | Activity | Duration | Start | Finish | Predecessors | Total float | Free float | Resources | Cost | 01- Network | Activity ID N |
| --- | --- | --- | --- | --- | --- | --- | --- | --- | --- | --- | --- | --- |
|  | PW | **Potable Water Network** |  | 2027-02-11 | 2027-03-23 |  |  |  |  |  |  |  |
|  | ML | **Main Line Sections** |  | 2027-02-11 | 2027-03-21 |  |  |  |  |  |  |  |
| CO-PW-ML-200 |  | Trench Excavation and Bedding Works for Main Lines of Potable Water Network for Alignment-RD-03-3 | 10d | 2027-02-11 | 2027-02-22 | PRO-SW-1DL-110 SS, ENG-MT-SW-ML-A-100, ENG-SH-SW-ML-A-110, MS-CS-SW SS, ENG-MS-SW-ML-A-110, CO-SD-MH-220, PRO-SD-1DL-100, CO-SD-MH-200, PRO-R25-SD-DL-100, CO-SD-MH-190, ENG-MT-SD-ML-A-100, MS-CS-SD SS, ENG-MS-SD-ML-A-110, ENG-MT-SD-ML-A-110, ENG-SH-SD-ML-A-110, CO-SD-MH-180, PRO-SW-1DL-100, ENG-MT-SW-ML-A-110, CO-SD-ML-220, ENG-SH-PW-ML-A-110, ENG-MS-PW-ML-A-110, ENG-MT-PW-ML-A-100, MS-CS-PW SS, CO-EW-230, MS-MM-130, MS-MM-140, CO-TSE-ML-330 | -87d | 0d | Skilled Labor [40 h]; Unskilled Labor [40 h]; Excavator [40 h]; Depth Between 0m to 1.50m; Depth Between 1.50m to 2.50m; Depth > 2.50m; Depth Between 0m to 1.50m [3.79]; Depth Between 1.50m to 2.50m [12.63] | 3,191.44 | PW |  |
| CO-PW-ML-210 |  | Pipes Laying and accessories for Main Lines of Potable Water Network for Alignment-RD-03-3 | 10d | 2027-02-23 | 2027-03-06 | CO-PW-ML-200, PRO-PW-1DL-100, PRO-R25-PW-DL-100 | -87d | 0d | Skilled Labor [80 h]; Unskilled Labor [40 h]; Plumber [40 h]; JCB [40 h]; Depth Between 0m to 1.50m; Depth Between 1.50m to 2.50m; Depth > 2.50m; Depth Between 0m to 1.50m [9.49]; Depth Between 1.50m to 2.50m [31.57] | 7,981.32 | PW |  |
| CO-PW-ML-220 |  | Trench Backfilling and Compaction Works for Main Lines of Potable Water Network for Alignment-RD-03-3 | 10d | 2027-03-07 | 2027-03-21 | CO-PW-ML-210 | -79d | 0d | Skilled Labor [40 h]; Water Tanker [40 h]; Loader [40 h]; Compactor [40 h]; Depth Between 0m to 1.50m; Depth Between 1.50m to 2.50m; Depth > 2.50m; Depth Between 0m to 1.50m [7.6]; Depth Between 1.50m to 2.50m [25.25] | 6,385.6 | PW |  |
|  | VC | **Valve Chamber** |  | 2027-02-11 | 2027-03-23 |  |  |  |  |  |  |  |
| CO-PW-VC-290 |  | Excavation Works for Main Line Valves and Valve Chambers of Potable Water Network for Alignment-RD-03-3 | 10d | 2027-02-11 | 2027-02-22 | ENG-MT-PW-ML-A-110, MS-CS-PW SS, CO-PW-ML-200 SS, CO-PW-ML-200 FF, MS-MM-130, MS-MM-140 | -65d | 0d | Unskilled Labor [24 h]; Excavator [24 h]; Gate valves Dia 50 mm; Gate valves Dia 100 mm; Gate valves Dia 150 mm; Gate valves Dia 250 mm; Air valves with Dia 50 mm; Washout valve Dia 100 mm [0.07]; Wash out chamber (2500x 2500mm) [0.07]; Air valve chamber (1000x 1000 mm); Flow meter chamber (1500x 2500 mm); Flow meter dia 100 mm | 1,656.81 | PW | CO-R26.S11-PW-170 |
| CO-PW-VC210 |  | Installation of Valve Chambers of Potable Water Network for Alignment-RD-03-3 | 10d | 2027-02-23 | 2027-03-06 | CO-PW-VC-290, PRO-R25-PW-DL-120 | -65d | 0d | Skilled Labor [24 h]; Unskilled Labor [48 h]; Plumber [48 h]; Gate valves Dia 50 mm; Gate valves Dia 100 mm; Gate valves Dia 150 mm; Gate valves Dia 250 mm; Air valves with Dia 50 mm; Washout valve Dia 100 mm [0.78]; Wash out chamber (2500x 2500mm) [0.78]; Air valve chamber (1000x 1000 mm); Flow meter chamber (1500x 2500 mm); Flow meter dia 100 mm | 17,230.83 | PW | CO-R26.S11-PW-180 |
| CO-PW-VC-300 |  | Installation Works for Valves of Potable Water Network for Alignment-RD-03-3 | 9d | 2027-03-07 | 2027-03-20 | CO-PW-VC210, PRO-PW-1DL-110, PRO-R25-PW-DL-110, CO-PW-VC-190 | -65d | 0d | Skilled Labor [24 h]; Unskilled Labor [48 h]; Plumber [48 h]; Gate valves Dia 50 mm; Gate valves Dia 100 mm; Gate valves Dia 150 mm; Gate valves Dia 250 mm; Air valves with Dia 50 mm; Washout valve Dia 100 mm [0.19]; Wash out chamber (2500x 2500mm) [0.19]; Air valve chamber (1000x 1000 mm); Flow meter chamber (1500x 2500 mm); Flow meter dia 100 mm | 4,307.71 | PW | CO-R26.S11-PW-190 |
| CO-PW-VC-310 |  | Backfilling Works for Main Line Valves and Valve Chambers of Potable Water Network for Alignment-RD-03-3 | 3d | 2027-03-21 | 2027-03-23 | CO-PW-VC-300, CO-PW-ML-220 FF, CO-PW-VC-220 SS | -65d | 0d | Unskilled Labor [24 h]; Excavator [24 h]; Gate valves Dia 50 mm; Gate valves Dia 100 mm; Gate valves Dia 150 mm; Gate valves Dia 250 mm; Air valves with Dia 50 mm; Washout valve Dia 100 mm [0.15]; Wash out chamber (2500x 2500mm) [0.15]; Air valve chamber (1000x 1000 mm); Flow meter chamber (1500x 2500 mm); Flow meter dia 100 mm | 3,313.62 | PW | CO-R26.S11-PW-220 |
|  | FH | **Fire Hydrant** |  | 2027-02-23 | 2027-03-23 |  |  |  |  |  |  |  |
| CO-PW-FH-230 |  | Excavation Works for Fire Hydrants of Potable Water Network for Alignment-RD-03-3 | 10d | 2027-02-23 | 2027-03-06 | CO-PW-VC-290, ENG-SH-PW-FH-A-110, ENG-MT-PW-FH-A-100, MS-CS-PW SS, CO-EW-230, MS-MM-130, MS-MM-140, CO-PW-FH-140 | -65d | 0d | Skilled Labor [16 h]; Excavator [16 h]; 3-outlet fire hydrant (2 x 2.5 inch and 1 x 4.5 inch) in the form of a separate dry vacuum cylinder, complete according to drawings. [0.07] | 562.13 | PW |  |
| CO-PW-FH-240 |  | Installation Works for Fire Hydrant of Potable Water Network for Alignment-RD-03-3 | 10d | 2027-03-07 | 2027-03-21 | CO-PW-FH-230, PRO-PW-1DL-120, CO-PW-ML-210, CO-PW-FH-150 | -65d | 0d | Skilled Labor [16 h]; Unskilled Labor [32 h]; Plumber [32 h]; 3-outlet fire hydrant (2 x 2.5 inch and 1 x 4.5 inch) in the form of a separate dry vacuum cylinder, complete according to drawings. [0.97] | 7,307.72 | PW |  |
| CO-PW-FH-250 |  | Trench Backfilling and Compaction Works for Fire Hydrants of Potable Water Network for Alignment-RD-03-3 | 2d | 2027-03-22 | 2027-03-23 | CO-PW-FH-240, CO-PW-VC-310 FF, CO-PW-FH-160 SS | -65d | 14d | Skilled Labor [16 h]; Water Tanker [16 h]; Loader [16 h]; Compactor [16 h]; 3-outlet fire hydrant (2 x 2.5 inch and 1 x 4.5 inch) in the form of a separate dry vacuum cylinder, complete according to drawings. [0.15] | 1,124.26 | PW |  |
|  | IR | **Irrigation Network** |  | 2027-02-23 | 2027-03-23 |  |  |  |  |  |  |  |
|  | ML | **Main Line Pipes** |  | 2027-02-23 | 2027-03-23 |  |  |  |  |  |  |  |
| CO-IR-ML-350 |  | Trench Excavation and Bedding Works for Main Lines of Irrigation Network for Alignment-RD-03-3 | 10d | 2027-02-23 | 2027-03-06 | ENG-SH-IR-ML-A-110, ENG-MS-IR-ML-A-110, ENG-MT-IR-ML-A-100, MS-CS-IR SS, MS-MM-130, MS-MM-140, CO-EW-230, CO-PW-ML-200 | -87d | 0d | Unskilled Labor [24 h]; Excavator [24 h]; pipe line O.D 32 mm PN 10, in depth 0 to 1.5 m [41.04]; pipe line O.D 40 mm PN 10, in depth 0 to 1.5 m [37.31]; pipe line O.D 50 mm PN 10, in depth 0 to 1.5 m [11.19] | 2,307.25 | IR |  |
| CO-IR-ML-360 |  | Pipes Laying Works for Main Lines of Irrigation Network for Alignment-RD-03-3 | 3d | 2027-03-07 | 2027-03-13 | CO-IR-ML-350, PRO-IR-1DL-100, PRO-R25-IR-DL-100, CO-PW-ML-210 | -87d | 0d | Skilled Labor [24 h]; Unskilled Labor [48 h]; Plumber [24 h]; Excavator [24 h]; pipe line O.D 32 mm PN 10, in depth 0 to 1.5 m [205.22]; pipe line O.D 40 mm PN 10, in depth 0 to 1.5 m [186.57]; pipe line O.D 50 mm PN 10, in depth 0 to 1.5 m [55.97] | 11,536.25 | IR |  |
| CO-IR-ML-370 |  | Installation Works for Main Line Valves of Irrigation Network for Alignment-RD-03-3 | 3d | 2027-03-14 | 2027-03-16 | CO-IR-ML-360, ENG-MT-IR-ML-A-110, PRO-IR-1DL-110, PRO-R25-IR-DL-110 | -87d | 0d | Skilled Labor [24 h]; Unskilled Labor [48 h]; Plumber [48 h]; Gate valve 50 mm PN16 [4.48]; Direct Burried Gate valve 40 mm PN16 [1.49] | 5,680.48 | IR |  |
| CO-IR-ML-390 |  | Installation Works for Bulbblers And Sprinkler and Irrigation Control System of Irrigation Network for Alignment-RD-03-3 | 3d | 2027-03-17 | 2027-03-20 | CO-IR-ML-370 | -87d | 0d | Skilled Labor [48 h]; Unskilled Labor [96 h]; Plumber [96 h]; Pressure–compensating bubblers 110 Lit/Hr [167.16]; Flushing Bronze gate valve dia 1.5" inside PVC box [2.99]; Air release valve 1.5" inside PVC box [2.99]; Extra flexible pressure compensating on surface inline dripline`s, O.D. is 16.1 mm [3283.58]; Electrical Solenoid Valve ( 1.5") inside PVC box [1.49]; Electrical Solenoid Valve ( 2") inside PVC box [1.49]; Quick coupling valve 1" inside a round valve box 10" size with a manual gate valve, hose swivel and key with all accessories [8.96]; Advanced Irrigation controller subject to client approval, can connect with Centarl Control system and cabable to integrate with Smart City systems,BMS or Scada system ,Can record the real flow rate per stations; Decoder cables 12 AWG between valves and controllers, The cables shall be pulled through 32? UPVC conduit and inspection 10" round valve box every 100 meters, as per standard specification and drawings [522.39] | 65,819.07 | IR |  |
| CO-IR-ML-380 |  | Trench Backfilling and Compaction Works for Main Lines of Irrigation Network for Alignment-RD-03-3 | 3d | 2027-03-21 | 2027-03-23 | CO-IR-ML-390 | -87d | 3d | Skilled Labor [24 h]; Excavator [24 h]; pipe line O.D 32 mm PN 10, in depth 0 to 1.5 m [82.09]; pipe line O.D 40 mm PN 10, in depth 0 to 1.5 m [74.63]; pipe line O.D 50 mm PN 10, in depth 0 to 1.5 m [22.39] | 4,614.5 | IR |  |
|  | MV | **Medium Voltage Network** |  | 2027-03-22 | 2027-03-31 |  |  |  |  |  |  |  |
|  | CW | **Cabling Works** |  | 2027-03-22 | 2027-03-31 |  |  |  |  |  |  |  |
| CO-MV-ML-340 |  | Trench Excavation and Bedding Works for Medium Voltage Network for Alignment-RD-03-3 | 3d | 2027-03-22 | 2027-03-24 | CO-SD-MH-220, PRO-SD-1DL-100, CO-SD-MH-200, PRO-R25-SD-DL-100, CO-SD-MH-190, ENG-MT-SD-ML-A-100, MS-CS-SD SS, ENG-MS-SD-ML-A-110, ENG-MT-SD-ML-A-110, ENG-SH-SD-ML-A-110, CO-SD-MH-180, CO-SD-ML-130, PRO-R25-SD-DL-110, PRO-R25-SD-DL-130, PRO-SD-1DL-130, PRO-SD-1DL-120, ENG-MT-SD-CB-A-110, ENG-SH-SD-CB-A-110, ENG-MS-SD-CB-A-110, PRO-SW-1DL-110 SS, ENG-MT-SW-ML-A-100, ENG-SH-SW-ML-A-110, MS-CS-SW SS, ENG-MS-SW-ML-A-110, PRO-SW-1DL-100, ENG-MT-SW-ML-A-110, ENG-SH-MV-A-110, ENG-MS-MV-A-110, MS-CS-MV SS, CO-SD-ML-220, CO-EW-230, MS-MM-130, MS-MM-140, CO-PW-ML-220, CO-MV-ML-370 | -79d | 0d | Skilled Labor [24 h]; Unskilled Labor [24 h]; Excavator [24 h]; Excavation for Trench size 40cm wide and 80cm deep (for 1 cable) [14.97]; Excavation for Trench Size 60cm wide and 80cm deep (for 2 cables) [7.48]; Excavation for Trench Size 90cm wide and 80cm deep (for 3 cables); Excavation for Trench Size 180cm wide and 80cm deep (for 6 cables); Excavation for Trench Size 210 cm wide and 80cm deep (for 7 cables); Excavation for Trench Size 240cm wide and 80cm deep (for 8 cables) | 617.24 | MV |  |
| CO-MV-ML-350 |  | Duct Laying Works for Medium Voltage Network for Alignment-RD-03-3 | 3d | 2027-03-25 | 2027-03-28 | CO-MV-ML-340, PRO-MV-DL-100, PRO-MV-1DL-100, CO-MV-ML-380 | -79d | 0d | Unskilled Labor [96 h]; Electrician [24 h]; JCB [24 h]; Duct bank for (33) cables; Duct bank for (21) cables; Duct bank for (15) cables [1.97]; HV Cable Road Crossing | 1,402.14 | MV |  |
| CO-MV-ML-360 |  | Trench Backfilling and Compaction Works for Medium Voltage Network for Alignment-RD-03-3 | 3d | 2027-03-29 | 2027-03-31 | CO-MV-ML-350 | -79d | 0d | Skilled Labor [48 h]; Water Tanker [24 h]; JCB [24 h]; Duct bank for (33) cables; Duct bank for (21) cables; Duct bank for (15) cables [0.9]; HV Cable Road Crossing | 637.34 | MV |  |

| ID | WBS | Activity | Duration | Start | Finish | Predecessors | Total float | Free float | Resources | Cost | 01- Network | Activity ID N |
| --- | --- | --- | --- | --- | --- | --- | --- | --- | --- | --- | --- | --- |
|  | LV | **Low Voltage Network** |  | 2027-04-01 | 2027-05-03 |  |  |  |  |  |  |  |
|  | MLVC | **Main Low Voltage Cables Works ( Cable 300 MM )** |  | 2027-04-01 | 2027-04-21 |  |  |  |  |  |  |  |
| CON-LV-ML-190 |  | Trench Excavation and Bedding Works for Main Cable of Low Voltage Network for Alignment-RD-03-3 | 7d | 2027-04-01 | 2027-04-08 | CO-SD-ML-130, PRO-R25-SD-DL-110, PRO-R25-SD-DL-130, PRO-SD-1DL-130, PRO-SD-1DL-120, ENG-MT-SD-CB-A-110, ENG-SH-SD-CB-A-110, ENG-MS-SD-CB-A-110, MS-CS-SD SS, CO-SD-ML-220, PRO-SW-1DL-110 SS, ENG-MT-SW-ML-A-100, ENG-SH-SW-ML-A-110, MS-CS-SW SS, ENG-MS-SW-ML-A-110, CO-SD-MH-220, PRO-SD-1DL-100, CO-SD-MH-200, PRO-R25-SD-DL-100, CO-SD-MH-190, ENG-MT-SD-ML-A-100, ENG-MS-SD-ML-A-110, ENG-MT-SD-ML-A-110, ENG-SH-SD-ML-A-110, CO-SD-MH-180, PRO-SW-1DL-100, ENG-MT-SW-ML-A-110, CO-PW-ML-220, ENG-SH-LV-A-120, ENG-MS-MV-A-120, MS-CS-LV SS, CO-MV-ML-360, CO-EW-230, MS-MM-130, MS-MM-140, CON-LV-ML-100 | -79d | 0d | Skilled Labor [32 h]; Unskilled Labor [32 h]; Excavator [32 h]; Road crossing ducts, 2 ways (2 x 150mm HDPE) [18.43]; Road crossing ducts, 2 ways (2 x 110mm UPVC) [7.33]; Road crossing ducts, 3 ways (3 x 110mm UPVC) [2.43] | 4,103.85 | LV |  |
| CON-LV-ML-200 |  | Cable Laying Works for Main Cable of Low Voltage Network for Alignment-RD-03-3 | 7d | 2027-04-10 | 2027-04-17 | CON-LV-ML-190, PRO-LV-ML-1DL-100, PRO-LV-ML-DL-100, CON-LV-ML-110 | -79d | 0d | Skilled Labor [32 h]; Unskilled Labor [128 h]; Electrician [32 h]; JCB [32 h]; 4C-300mm2 CU/XLPE / PVC ARMORED CABLE [2.58]; 4C-240mm2 CU/XLPE / PVC ARMORED CABLE [1.48]; 4C-185mm2 CU/XLPE / PVC ARMORED CABLE [1.48]; 4C-50mm2 CU/XLPE / PVC ARMORED CABLE [5.54]; 4C-16mm2 CU/XLPE / PVC ARMORED CABLE [127.63]; 4C-16MM2 CU/XLPE / PVC CABLE [51.54]; 1Cx150sq.mm2,Cu, PVC wire [2.58]; 1Cx120sq.mm2,Cu, PVC wire [3.33]; 1Cx95sq.mm,Cu, PVC wire [1.48]; 1Cx70sq.mm2,Cu, PVC wire [0.75]; 1Cx25sq.mm2,Cu, PVC wire [3.33]; 1Cx16sq.mm2,Cu, PVC wire [127.63]; 1Cx10sq.mm2,Cu, PVC wire [1.1] | 11,622.22 | LV |  |
| CON-LV-ML-210 |  | Trench Backfilling and Compaction Works for Main Cable of Low Voltage Network for Alignment-RD-03-3 | 4d | 2027-04-18 | 2027-04-21 | CON-LV-ML-200, CON-LV-ML-120 | -73d | 6d | Skilled Labor [64 h]; Water Tanker [32 h]; JCB [32 h]; 4C-300mm2 CU/XLPE / PVC ARMORED CABLE [1.18]; 4C-240mm2 CU/XLPE / PVC ARMORED CABLE [0.67]; 4C-185mm2 CU/XLPE / PVC ARMORED CABLE [0.67]; 4C-50mm2 CU/XLPE / PVC ARMORED CABLE [2.52]; 4C-16mm2 CU/XLPE / PVC ARMORED CABLE [58.01]; 4C-16MM2 CU/XLPE / PVC CABLE [23.42]; 1Cx150sq.mm2,Cu, PVC wire [1.18]; 1Cx120sq.mm2,Cu, PVC wire [1.51]; 1Cx95sq.mm,Cu, PVC wire [0.67]; 1Cx70sq.mm2,Cu, PVC wire [0.34]; 1Cx25sq.mm2,Cu, PVC wire [1.51]; 1Cx16sq.mm2,Cu, PVC wire [58.01]; 1Cx10sq.mm2,Cu, PVC wire [0.51] | 5,286.69 | LV |  |
|  | SLVC | **Service Low Voltage Cables Works ( Cable 70 MM )** |  | 2027-04-10 | 2027-04-28 |  |  |  |  |  |  |  |
| CON-LV-HC-190 |  | Trench Excavation and Bedding Works for Service Cable of Low Voltage Network for Alignment-RD-03-3 | 7d | 2027-04-10 | 2027-04-17 | CO-SD-MH-220, PRO-SD-1DL-100, CO-SD-MH-200, PRO-R25-SD-DL-100, CO-SD-MH-190, ENG-MT-SD-ML-A-100, MS-CS-SD SS, ENG-MS-SD-ML-A-110, ENG-MT-SD-ML-A-110, ENG-SH-SD-ML-A-110, CO-SD-MH-180, CO-SD-ML-130, PRO-R25-SD-DL-110, PRO-R25-SD-DL-130, PRO-SD-1DL-130, PRO-SD-1DL-120, ENG-MT-SD-CB-A-110, ENG-SH-SD-CB-A-110, ENG-MS-SD-CB-A-110, PRO-SW-1DL-110 SS, ENG-MT-SW-ML-A-100, ENG-SH-SW-ML-A-110, MS-CS-SW SS, ENG-MS-SW-ML-A-110, PRO-SW-1DL-100, ENG-MT-SW-ML-A-110, CON-LV-ML-190, ENG-MS-MV-A-120, MS-CS-LV SS, CO-EW-230, ENG-SH-LV-A-120, MS-MM-130, MS-MM-140, CO-PW-ML-220, CO-PW-VC-310, CO-PW-FH-250, CO-TSE-ML-330, CO-SD-ML-220, CON-LV-HC-100 | -79d | 0d | Skilled Labor [24 h]; Unskilled Labor [24 h]; Excavator [24 h]; Road crossing ducts, 2 ways (2 x 150mm HDPE) [9.21]; Road crossing ducts, 2 ways (2 x 110mm UPVC) [3.66]; Road crossing ducts, 3 ways (3 x 110mm UPVC) [1.22] | 2,051.03 | LV |  |
| CON-LV-HC-200 |  | Cable Laying Works for Service Cable of Low Voltage Network for Alignment-RD-03-3 | 7d | 2027-04-18 | 2027-04-25 | CON-LV-HC-190, CON-LV-ML-200, PRO-LV-HC-1DL-100, PRO-LV-HC-DL-100, CON-LV-HC-110 | -79d | 0d | Skilled Labor [24 h]; Unskilled Labor [96 h]; Electrician [24 h]; JCB [24 h]; 4C-300mm2 CU/XLPE / PVC ARMORED CABLE [2.58]; 4C-240mm2 CU/XLPE / PVC ARMORED CABLE [1.48]; 4C-185mm2 CU/XLPE / PVC ARMORED CABLE [1.48]; 4C-50mm2 CU/XLPE / PVC ARMORED CABLE [5.54]; 4C-16mm2 CU/XLPE / PVC ARMORED CABLE [127.63]; 4C-16MM2 CU/XLPE / PVC CABLE [51.54]; 1Cx150sq.mm2,Cu, PVC wire [2.58]; 1Cx120sq.mm2,Cu, PVC wire [3.33]; 1Cx95sq.mm,Cu, PVC wire [1.48]; 1Cx70sq.mm2,Cu, PVC wire [0.75]; 1Cx25sq.mm2,Cu, PVC wire [3.33]; 1Cx16sq.mm2,Cu, PVC wire [127.63]; 1Cx10sq.mm2,Cu, PVC wire [1.1] | 11,622.22 | LV |  |
| CON-LV-HC-210 |  | Trench Backfilling and Compaction Works for Service Cable of Low Voltage Network for Alignment-RD-03-3 | 3d | 2027-04-26 | 2027-04-28 | CON-LV-HC-200, CON-LV-ML-210 FF, CON-LV-HC-120 | -79d | 0d | Skilled Labor [48 h]; Water Tanker [24 h]; JCB [24 h]; 4C-300mm2 CU/XLPE / PVC ARMORED CABLE [1.18]; 4C-240mm2 CU/XLPE / PVC ARMORED CABLE [0.67]; 4C-185mm2 CU/XLPE / PVC ARMORED CABLE [0.67]; 4C-50mm2 CU/XLPE / PVC ARMORED CABLE [2.52]; 4C-16mm2 CU/XLPE / PVC ARMORED CABLE [58.01]; 4C-16MM2 CU/XLPE / PVC CABLE [23.42]; 1Cx150sq.mm2,Cu, PVC wire [1.18]; 1Cx120sq.mm2,Cu, PVC wire [1.51]; 1Cx95sq.mm,Cu, PVC wire [0.67]; 1Cx70sq.mm2,Cu, PVC wire [0.34]; 1Cx25sq.mm2,Cu, PVC wire [1.51]; 1Cx16sq.mm2,Cu, PVC wire [58.01]; 1Cx10sq.mm2,Cu, PVC wire [0.51] | 5,286.69 | LV |  |
|  | DP | **Distribution Pillars Works** |  | 2027-04-29 | 2027-05-03 |  |  |  |  |  |  |  |
| CON-LV-DP-190 |  | Installation Works for Distribution Pillar Units of Low Voltage Network for Alignment-RD-03-3 | 4d | 2027-04-29 | 2027-05-03 | ENG-MS-MV-A-120, MS-CS-LV SS, CO-EW-230, MS-MM-130, MS-MM-140, CON-LV-DP-100, CON-LV-HC-210 | -75d | 0d | Unskilled Labor [64 h]; Excavator [32 h]; Road crossing ducts, 2 ways (2 x 150mm HDPE) [3.07]; Road crossing ducts, 2 ways (2 x 110mm UPVC) [1.22]; Road crossing ducts, 3 ways (3 x 110mm UPVC) [0.4] | 684.27 | LV |  |
|  | SL | **Street Lighting Network** |  | 2027-04-01 | 2027-04-21 |  |  |  |  |  |  |  |
|  | LP | **Lighting Poles Works** |  | 2027-04-01 | 2027-04-21 |  |  |  |  |  |  |  |
| CO-SL-LP-450 |  | Installation Works for Lighting Poles Foundation of Street Lighting Network for Alignment-RD-03-3 | 6d | 2027-04-01 | 2027-04-07 | ENG-SH-SL-A-110, ENG-MS-SL-A-110, ENG-MT-SL-A-100, MS-CS-SL SS, CO-EW-230, MS-MM-130, MS-MM-140, CO-MV-ML-360, PRO-R25-SL-DL-110 | -77d | 0d | Unskilled Labor [48 h]; Excavator [24 h]; Lighting poles with 1 arm, height of (12) meters, including the power distribution box, cables, and RCC foundation. [1.12]; Lighting poles with 2 arms, height of (12) meters, including the power distribution box, cables, and RCC foundation. | 2,697.09 | SL |  |
| CO-SL-LP-460 |  | Installation Works for Lighting Poles of Street Lighting Network for Alignment-RD-03-3 | 6d | 2027-04-08 | 2027-04-14 | CO-SL-LP-450, ENG-MT-SL-A-110, PRO-R25-SL-DL-120 | -77d | 0d | Unskilled Labor [48 h]; Boom Truck [24 h]; Lighting poles with 1 arm, height of (12) meters, including the power distribution box, cables, and RCC foundation. [3.73]; Lighting poles with 2 arms, height of (12) meters, including the power distribution box, cables, and RCC foundation. | 8,990.3 | SL |  |
| CO-SL-LP-480 |  | Backfilling Works for Lighting Poles of Street Lighting Network for Alignment-RD-03-3 | 6d | 2027-04-15 | 2027-04-21 | CO-SL-LP-460 | -77d | 0d | Unskilled Labor [24 h]; Excavator [24 h]; Lighting poles with 1 arm, height of (12) meters, including the power distribution box, cables, and RCC foundation. [0.37]; Lighting poles with 2 arms, height of (12) meters, including the power distribution box, cables, and RCC foundation. | 899.03 | SL | CO-R26.S11-SL-210 |
|  | CW | **Cabling Works** |  | 2027-04-15 | 2027-04-21 |  |  |  |  |  |  |  |
| CO-SL-CL-350 |  | Cable Laying Works for Street Lighting Network for Alignment-RD-03-3 | 6d | 2027-04-15 | 2027-04-21 | ENG-SH-SL-A-110, ENG-MS-SL-A-110, ENG-MT-SL-ML-A-100, PRO-SL-1DL-100, MS-CS-SL SS, MS-MM-130, MS-MM-140, CO-SL-LP-460, CO-MV-ML-360, CO-PW-ML-220, CO-PW-FH-250, CO-SD-ML-220, CO-EW-230, CO-IR-ML-380, CO-SD-MH-220, PRO-SD-1DL-100, CO-SD-MH-200, PRO-R25-SD-DL-100, CO-SD-MH-190, ENG-MT-SD-ML-A-100, MS-CS-SD SS, ENG-MS-SD-ML-A-110, ENG-MT-SD-ML-A-110, ENG-SH-SD-ML-A-110, CO-SD-MH-180, CO-SD-ML-130, PRO-R25-SD-DL-110, PRO-R25-SD-DL-130, PRO-SD-1DL-130, PRO-SD-1DL-120, ENG-MT-SD-CB-A-110, ENG-SH-SD-CB-A-110, ENG-MS-SD-CB-A-110, PRO-SW-1DL-110 SS, ENG-MT-SW-ML-A-100, ENG-SH-SW-ML-A-110, MS-CS-SW SS, ENG-MS-SW-ML-A-110, PRO-SW-1DL-100, ENG-MT-SW-ML-A-110, PRO-R25-SL-DL-100 | -77d | 0d | Skilled Labor [24 h]; Unskilled Labor [48 h]; Electrician [24 h]; JCB [24 h]; Lighting poles with 1 arm, height of (12) meters, including the power distribution box, cables, and RCC foundation. [4.1]; Lighting poles with 2 arms, height of (12) meters, including the power distribution box, cables, and RCC foundation. | 9,889.33 | SL |  |
| CO-SL-CL-360 |  | Trench Backfilling and Compaction Works for Street Lighting Network for Alignment-RD-03-3 | 6d | 2027-04-15 | 2027-04-21 | CO-SL-CL-350 FF, CO-SL-CL-350 SS, CO-SL-LP-480 FF | -77d | 6d | Skilled Labor [24 h]; Water Tanker [24 h]; Excavator [24 h]; Lighting poles with 1 arm, height of (12) meters, including the power distribution box, cables, and RCC foundation. [3.36]; Lighting poles with 2 arms, height of (12) meters, including the power distribution box, cables, and RCC foundation. | 8,091.27 | SL |  |
|  | DPB | **Distrubution Panel Boards** |  |  |  |  |  |  |  |  |  |  |
|  | TE | **Telecom and Light Current Network** |  | 2027-04-13 | 2027-05-10 |  |  |  |  |  |  |  |
|  | PD | **Ducts Works** |  | 2027-04-29 | 2027-05-10 |  |  |  |  |  |  |  |
| CO-TE-DW-230 |  | Pipes Laying Works for Ducts of Telecom Network for Alignment-RD-03-3 | 6d | 2027-04-29 | 2027-05-05 | ENG-SH-TE-A-110, ENG-MS-TE-A-110, ENG-MT-TE-A-100, PRO-TE-1DL-100, MS-CS-TE SS, MS-MM-130, MS-MM-140, CO-SD-ML-220, CO-PW-ML-220, CO-PW-VC-310, CO-PW-FH-250, CO-MV-ML-360, CON-LV-ML-210, CON-LV-HC-210, CO-SL-LP-480, CO-SL-CL-360, CO-EW-230, CO-IR-ML-380, CO-SD-MH-220, CO-SD-ML-130, CO-PW-ML-130, CO-PW-VC-220, CO-PW-FH-160, CON-LV-ML-120, CON-LV-HC-120, CO-EW-200, CO-SL-LP-570, CO-SL-CL-420, PRO-R25-SD-DL-110, PRO-R25-SD-DL-130, PRO-SD-1DL-130, PRO-SD-1DL-120, ENG-MT-SD-CB-A-110, ENG-SH-SD-CB-A-110, ENG-MS-SD-CB-A-110, MS-CS-SD SS, PRO-SW-1DL-110, PRO-R25-SW-DL-110, ENG-MT-SW-ML-A-100, ENG-SH-SW-ML-A-110, MS-CS-SW SS, ENG-MS-SW-ML-A-110, PRO-SW-1DL-100, PRO-R25-SW-DL-100, ENG-MT-SW-ML-A-110, ENG-MT-IR-ML-A-110, PRO-IR-1DL-110, PRO-R25-IR-DL-110, PRO-IR-1DL-100, CO-PW-ML-110, PRO-R25-IR-DL-100, ENG-SH-IR-ML-A-110, ENG-MS-IR-ML-A-110, ENG-MT-IR-ML-A-100, CO-PW-ML-100, MS-CS-IR SS, PRO-R25-SL-DL-160, ENG-MT-SL-DB-A-100, MS-CS-SL SS, PRO-SD-1DL-100, CO-SD-MH-200, PRO-R25-SD-DL-100, CO-SD-MH-190, ENG-MT-SD-ML-A-100, ENG-MS-SD-ML-A-110, ENG-MT-SD-ML-A-110, ENG-SH-SD-ML-A-110, CO-SD-MH-180, PRO-SW-1DL-110 SS, PRO-R25-TE-DL-100, CO-TE-DW-110 SS | -79d | 0d | Skilled Labor [32 h]; Unskilled Labor [64 h]; Electrician [32 h]; 2-ways ducts, 32mm diameter [80.78]; 2x3-ways ducts, 50mm diameter [256.12]; 8-ways ducts, 6 x 160mm & 2 x 100mm [19.21]; 2 PVC ducts 150x200 mm (60mm diameter); 4 PVC ducts 600x150 mm (60mm diameter); 8 PVC ducts 1000x300 mm (60mm diameter); 6 PVC ducts 600x800 mm (60mm diameter) | 19,574.76 | TE |  |
| CO-TE-DW-240 |  | Trench Backfilling and Compaction Works for Ducts of Telecom Network for Alignment-RD-03-3 | 4d | 2027-05-06 | 2027-05-10 | CO-TE-DW-230, CO-TE-DW-110, CO-TE-MH-250 FF, CO-TE-DW-130 SS | -79d | 6d | Skilled Labor [32 h]; Excavator [32 h]; 2-ways ducts, 32mm diameter [36.72]; 2x3-ways ducts, 50mm diameter [116.42]; 8-ways ducts, 6 x 160mm & 2 x 100mm [8.73]; 2 PVC ducts 150x200 mm (60mm diameter); 4 PVC ducts 600x150 mm (60mm diameter); 8 PVC ducts 1000x300 mm (60mm diameter); 6 PVC ducts 600x800 mm (60mm diameter) | 8,897.62 | TE |  |

| ID | WBS | Activity | Duration | Start | Finish | Predecessors | Total float | Free float | Resources | Cost | 01- Network |
| --- | --- | --- | --- | --- | --- | --- | --- | --- | --- | --- | --- |
|  | MH | **Manholes Works** |  | 2027-04-13 | 2027-04-21 |  |  |  |  |  |  |
| CO-TE-MH-230 |  | Excavation Works for Manholes of Telecom Network for Alignment-RD-03-3 | 2d | 2027-04-13 | 2027-04-14 | ENG-MT-TE-A-100, PRO-TE-1DL-100, CO-SD-ML-220, CO-PW-ML-220, CO-PW-VC-310, CO-PW-FH-250, CO-MV-ML-360, CO-EW-230, CO-IR-ML-380, CO-SD-MH-220, CO-SD-ML-130, CO-PW-ML-130, CO-PW-VC-220, CO-PW-FH-160, CON-LV-ML-120, CON-LV-HC-120, CO-EW-200, CO-SL-LP-570, CO-SL-CL-420, PRO-R25-SD-DL-110, PRO-R25-SD-DL-130, PRO-SD-1DL-130, PRO-SD-1DL-120, ENG-MT-SD-CB-A-110, ENG-SH-SD-CB-A-110, ENG-MS-SD-CB-A-110, MS-CS-SD SS, PRO-SW-1DL-110, PRO-R25-SW-DL-110, ENG-MT-SW-ML-A-100, ENG-SH-SW-ML-A-110, MS-CS-SW SS, ENG-MS-SW-ML-A-110, PRO-SW-1DL-100, PRO-R25-SW-DL-100, ENG-MT-SW-ML-A-110, ENG-MT-IR-ML-A-110, PRO-IR-1DL-110, PRO-R25-IR-DL-110, PRO-IR-1DL-100, CO-PW-ML-110, PRO-R25-IR-DL-100, ENG-SH-IR-ML-A-110, ENG-MS-IR-ML-A-110, ENG-MT-IR-ML-A-100, CO-PW-ML-100, MS-CS-IR SS, PRO-R25-SL-DL-160, ENG-MT-SL-DB-A-100, MS-CS-SL SS, PRO-SD-1DL-100, CO-SD-MH-200, PRO-R25-SD-DL-100, CO-SD-MH-190, ENG-MT-SD-ML-A-100, ENG-MS-SD-ML-A-110, ENG-MT-SD-ML-A-110, ENG-SH-SD-ML-A-110, CO-SD-MH-180, PRO-SW-1DL-110 SS, ENG-SH-TE-A-110, ENG-MS-TE-A-110, ENG-MT-TE-A-110, PRO-TE-1DL-110, MS-CS-TE SS, MS-MM-130, MS-MM-140, CO-TE-MH-140 | -78d | 0d | Unskilled Labor [32 h]; JCB [16 h]; Manhole Type 3 (1200 x 1200 x 2000) [0.22]; Manhole Type 1 (800 x 600 x 1200) [0.15] | 979.1 | TE |
| CO-TE-MH-240 |  | Installation Works for Manholes of Telecom Network for Alignment-RD-03-3 | 3d | 2027-04-15 | 2027-04-18 | CO-TE-MH-230, PRO-R25-TE-DL-110, CO-TE-MH-150 | -78d | 0d | Unskilled Labor [32 h]; Boom Truck [16 h]; Manhole Type 3 (1200 x 1200 x 2000) [2.46]; Manhole Type 1 (800 x 600 x 1200) [1.64] | 10,770.12 | TE |
| CO-TE-MH-250 |  | Backfilling Works for Manholes of Telecom Network for Alignment-RD-03-3 | 3d | 2027-04-19 | 2027-04-21 | CO-TE-MH-240, CO-TE-MH-160 | -78d | 0d | Unskilled Labor [32 h]; Boom Truck [16 h]; Manhole Type 3 (1200 x 1200 x 2000) [0.67]; Manhole Type 1 (800 x 600 x 1200) [0.45] | 2,937.31 | TE |
|  | DD | **CCTV, Telephone, MSN, ACs System Works** |  | 2027-04-22 | 2027-04-25 |  |  |  |  |  |  |
| CO-TE-CTV-210 |  | Installation of CCTV, Telephone, ACS and MSN Systems Cables for Alignment-RD-03-3 | 3d | 2027-04-22 | 2027-04-25 | CO-TE-MH-250, ENG-SH-MSN-A-120, ENG-SH-CTV-A-110, ENG-MS-CTV-A-110, ENG-MT-CTV-A-100, PRO-CTV-1DL-100, MS-CS-TE SS, MS-MM-130, MS-MM-140, CO-TE-MH-160, PRO-R25-CTV-DL-100, CO-TE-CTV-110 | -78d | 3d | Skilled Labor [32 h]; Unskilled Labor [64 h]; Electrician [32 h]; NVR Server with RAID (5, 6 or 10) to record all cameras storage 80TB with all hardware / software / licenses etc. [0.18]; VMS Server with RAID (5, 6 or 10) complete Hardware / Software with one Color Laser Printer and all associated accessories for central management. [0.18]; Licenses for Cameras, Workstations and Keyboards [0.09]; Work Station (MMI with two monitors each, for Monitoring for CCTV & ACS) [0.09]; Keyboard with joystick for CCTV with all accessories as per specification [0.09]; Pole mounted IP( PoE) Fixed camera, 5MP,IP 66, IR illumination, 3-8mm varifocal, auto iris lens type [3.58]; Wall mounted IP( PoE) Fixed camera, 5MP,IP 66, IR illumination, 3-8mm varifocal, auto iris lens type [4.39]; 5MP Dome camera ceiling Mounted IP (PoE) indoor [1.52]; 5MP PTZ Multi Sensor Camera IP(PoE) 360 Degree View Outdoor with accessories (IP 66) [0.63]; 8 Port Industrial PoE Switch 10/100BaseT (0 deg to +70 deg. Celsius) [0.99]; Filed Equipment cabinet (FEC), with fan and ventilation, NEMEX 4X ,door, minimum size (600x600x400mm), the cabinet/enclosure includes industrial switch and UPS. [0.99]; IP Phone Communication server (hot standby) 50 Port equipped, Gateway, Gatekeeper, H.323, SIP, redundant Power etc. [0.27]; IP Phone Voice gateway [0.09]; Voice IP Phone [0.09]; NMS Server for IP phone and NETWORK Elements [0.09]; NMS Workstation [0.09]; Firm Ware, software & licenses [0.09]; Data Cable [0.09]; Power Cable [0.09]; Layer 3, 24 Port non-PoE switch10/1000BaseT/LX (-40 deg to +70 deg. Celsius), stack module and associated accessories for utility Telecom Server room [0.18]; Layer 2, 24 Port non-PoE switch10/1000BaseT (-40 deg to +70 deg. Celsius), stack module and associated accessories for utility Telecom Server and Security Guard house room [0.54]; Network Management System Server [0.18]; Network Management System workstation [0.09]; 42U rack dimension (W x H x L) 800 x 2000 x 1000 mm [0.18]; 12U rack dimension (W x H x L) 600 x 625 x 600 mm [0.09]; 06C Optical Fiber SM [162.99]; 48C Optical Fiber SM [519.4]; 48 Core Splice Closure [0.63]; Optical fiber patch cord 5m [2.15]; Data Cable (STP CAT 6A) [924.18]; 3C Power Cable armored 1.5mm2 [924.18]; 3C Power Cable armored 2.5 mm2 [924.18]; UTP CAT6A Patch Cord 1m/3m/5m [2.06]; Access Control Unit [0.45]; Access Card Reader [0.45]; Magnetic Lock [0.45]; Break Glass [0.36]; Exit Push button [0.45]; Door Sensor [0.45]; Biometrics Reader [0.72]; Smart Card Printer [0.09]; Card Issue Work Station [0.09]; Photographic Camera with stand [0.09]; Interface modules with CCTV, Fire and other systems [0.09]; 1-ways ducts, 6 x 50mm diameter [45.67]; 6 PVC ducts 150x200 mm (60mm diameter) [10.3] | 189,026.74 | CTV |
|  | RD | **Road Works** |  | 2027-05-11 | 2027-05-27 |  |  |  |  |  |  |
|  | RD | **Roads Works** |  |  |  |  |  |  |  |  |  |
|  | LS | **Pavement Works** |  | 2027-05-11 | 2027-05-20 |  |  |  |  |  |  |
| CO-RD-PV-220 |  | Fixing of Curbstone for Sidewalks Pavement for Alignment-RD-03-3 | 4d | 2027-05-11 | 2027-05-20 | PRO-R25-RD-DL-110, PRO-RD-1DL-110, CO-RD-PB-150 SS, CO-EW-230, CO-SD-ML-220, CO-PW-ML-220, CO-PW-VC-310, CO-TSE-ML-330, CO-MV-ML-360, CO-SL-LP-480, CO-SL-CL-360, ENG-MS-RD-A-20, ENG-MS-RD-A-30, ENG-MS-RD-A-40, PRO-R25-RD-DL-100, CON-LV-HC-210, CON-LV-ML-210, ENG-MS-RD-A-10, ENG-SH-RD-A-100, ENG-SH-RD-A-110, MS-CS-RD SS, PRO-RD-1DL-100, MS-MM-130, MS-MM-140, CO-PW-FH-250, CO-TE-MH-250, CO-RD-PB-140, CO-IR-ML-380, CO-SD-MH-220, PRO-SD-1DL-100, CO-SD-MH-200, PRO-R25-SD-DL-100, CO-SD-MH-190, ENG-MT-SD-ML-A-100, MS-CS-SD SS, ENG-MS-SD-ML-A-110, ENG-MT-SD-ML-A-110, ENG-SH-SD-ML-A-110, CO-SD-MH-180, CO-SD-ML-130, PRO-R25-SD-DL-110, PRO-R25-SD-DL-130, PRO-SD-1DL-130, PRO-SD-1DL-120, ENG-MT-SD-CB-A-110, ENG-SH-SD-CB-A-110, ENG-MS-SD-CB-A-110, PRO-SW-1DL-110 SS, ENG-MT-SW-ML-A-100, ENG-SH-SW-ML-A-110, MS-CS-SW SS, ENG-MS-SW-ML-A-110, PRO-SW-1DL-100, ENG-MT-SW-ML-A-110, PRO-LV-DP-1DL-100, PRO-LV-DP-DL-100, CON-LV-DP-120, CON-LV-DP-190, CON-LV-DP-110, ENG-SH-MSN-A-120, ENG-SH-CTV-A-110, ENG-MS-CTV-A-110, ENG-MT-CTV-A-100, PRO-CTV-1DL-100, MS-CS-TE SS, CO-TE-MH-160, CO-TE-CTV-110, ENG-MS-HS-A-10, PRO-R25-RD-DL-130, PRO-RD-1DL-150, CO-RD-PV-160 | -81d | 0d | Pavement Labor [256 h]; Bobcat [64 h]; JCB [64 h]; Precast Concrete Curbstone 150X300X900 Type (K1-A) [1198.54]; Precast Concrete Curbstone 100X200X500 Type (K4) [470.37]; Precast Concrete Curbstone 150X300X500 Type (K1-B) [103.78]; Precast Concrete Curbstone Type (K1-C) [7.27]; Flush Kerb Type (D) [13.15] | 57,329.85 | RD |
| CO-RD-PV-230 |  | Fixing of Interlock Tiles for Sidewalks Pavement for Alignment-RD-03-3 | 4d | 2027-05-11 | 2027-05-20 | ENG-MS-HS-A-10, PRO-R25-RD-DL-120, PRO-RD-1DL-140, CO-RD-PV-220 SS, CO-RD-PV-170 SS | -81d | 0d | Pavement Labor [1376 h]; Bobcat [896 h]; JCB [896 h]; 60mm thick [3331.52]; 80mm thick [6545.07] | 527,839.72 | RD |
|  | TS | **Traffic Signs Boards and Roads Marking** |  | 2027-05-11 | 2027-05-27 |  |  |  |  |  |  |
| CO-RD-F-RM-210 |  | Application of Road Marking Works For Road Works for Alignment-RD-03-3 | 3d | 2027-05-11 | 2027-05-13 | PRO-R25-RD-DL-110, PRO-RD-1DL-110, CO-RD-PB-150 SS, CO-TE-CTV-210, CO-EW-230, CO-SD-ML-220, CO-PW-ML-220, CO-PW-VC-310, CO-TSE-ML-330, CO-MV-ML-360, CO-SL-LP-480, CO-SL-CL-360, ENG-MS-RD-A-20, ENG-MS-RD-A-30, ENG-MS-RD-A-40, PRO-R25-RD-DL-100, CON-LV-HC-210, CON-LV-ML-210, ENG-MS-RD-A-10, ENG-SH-RD-A-100, ENG-SH-RD-A-110, MS-CS-RD SS, PRO-RD-1DL-100, MS-MM-130, MS-MM-140, CO-PW-FH-250, CO-TE-MH-250, CO-RD-PB-140, CO-IR-ML-380, CO-SD-MH-220, PRO-SD-1DL-100, CO-SD-MH-200, PRO-R25-SD-DL-100, CO-SD-MH-190, ENG-MT-SD-ML-A-100, MS-CS-SD SS, ENG-MS-SD-ML-A-110, ENG-MT-SD-ML-A-110, ENG-SH-SD-ML-A-110, CO-SD-MH-180, CO-SD-ML-130, PRO-R25-SD-DL-110, PRO-R25-SD-DL-130, PRO-SD-1DL-130, PRO-SD-1DL-120, ENG-MT-SD-CB-A-110, ENG-SH-SD-CB-A-110, ENG-MS-SD-CB-A-110, PRO-SW-1DL-110 SS, ENG-MT-SW-ML-A-100, ENG-SH-SW-ML-A-110, MS-CS-SW SS, ENG-MS-SW-ML-A-110, PRO-SW-1DL-100, ENG-MT-SW-ML-A-110, PRO-LV-DP-1DL-100, PRO-LV-DP-DL-100, CON-LV-DP-120, CON-LV-DP-190, CON-LV-DP-110, ENG-SH-MSN-A-120, ENG-SH-CTV-A-110, ENG-MS-CTV-A-110, ENG-MT-CTV-A-100, PRO-CTV-1DL-100, MS-CS-TE SS, CO-TE-MH-160, CO-TE-CTV-110, CO-RD-PV-230 SS, ENG-MS-MRK-A-10, PRO-R25-RD-DL-150, ENG-SH-MRK-A-110, PRO-RD-1DL-170, CO-RD-PV-220 SS, CO-RD-F-RM-180 SS | -81d | 3d | Skilled Labor [24 h]; Road Painter [24 h]; Retroreflective Thermoplastic White Traffic lines [105.49]; Retroreflective Thermoplastic Yellow, Traffic lines [158.88]; Precast Concrete Blister Warning Tactile Paver Brown Finish 300*300*60mm [3] | 7,794.5 | RD |
| CO-RD-F-TS-150 |  | Installation Works of Traffic Signs Boards For Road Works for Alignment-RD-03-3 | 4d | 2027-05-24 | 2027-05-27 | PRO-R25-RD-DL-110, PRO-RD-1DL-110, CO-RD-PB-150 SS, CO-IR-TF-210, CO-TE-CTV-210, CO-EW-230, CO-SD-ML-220, CO-PW-ML-220, CO-PW-VC-310, CO-TSE-ML-330, CO-MV-ML-360, CO-SL-LP-480, CO-SL-CL-360, ENG-MS-RD-A-20, ENG-MS-RD-A-30, ENG-MS-RD-A-40, PRO-R25-RD-DL-100, CON-LV-HC-210, CON-LV-ML-210, ENG-MS-RD-A-10, ENG-SH-RD-A-100, ENG-SH-RD-A-110, MS-CS-RD SS, PRO-RD-1DL-100, MS-MM-130, MS-MM-140, CO-TE-DW-240, CO-PW-FH-250, CO-TE-MH-250, CO-RD-PB-140, CO-IR-ML-380, CO-SD-MH-220, PRO-SD-1DL-100, CO-SD-MH-200, PRO-R25-SD-DL-100, CO-SD-MH-190, ENG-MT-SD-ML-A-100, MS-CS-SD SS, ENG-MS-SD-ML-A-110, ENG-MT-SD-ML-A-110, ENG-SH-SD-ML-A-110, CO-SD-MH-180, CO-SD-ML-130, PRO-R25-SD-DL-110, PRO-R25-SD-DL-130, PRO-SD-1DL-130, PRO-SD-1DL-120, ENG-MT-SD-CB-A-110, ENG-SH-SD-CB-A-110, ENG-MS-SD-CB-A-110, PRO-SW-1DL-110 SS, ENG-MT-SW-ML-A-100, ENG-SH-SW-ML-A-110, MS-CS-SW SS, ENG-MS-SW-ML-A-110, PRO-SW-1DL-100, ENG-MT-SW-ML-A-110, PRO-LV-DP-1DL-100, PRO-LV-DP-DL-100, CON-LV-DP-120, CON-LV-DP-190, CON-LV-DP-110, ENG-SH-MSN-A-120, ENG-SH-CTV-A-110, ENG-MS-CTV-A-110, ENG-MT-CTV-A-100, PRO-CTV-1DL-100, MS-CS-TE SS, CO-TE-MH-160, CO-TE-CTV-110, CO-RD-F-RM-210, ENG-MS-TSB-A-10, PRO-R25-RD-DL-140, ENG-SH-TSB-A-100, PRO-RD-1DL-160, CO-RD-F-TS-120 | -84d | 0d | Unskilled Labor [48 h]; Traffic signs, ground mounted, Sheet Aluminum, (breakaway) Single post IPE, with all accessories [7.46] | 4,733.75 | RD |
|  | 3 | **Finishes for Infrastructure Networks** |  | 2027-04-01 | 2027-05-31 |  |  |  |  |  |  |
|  | 11 | **Storm Drainage Network** |  | 2027-05-26 | 2027-05-31 |  |  |  |  |  |  |
|  | TF | **Testing and Finishes** |  | 2027-05-26 | 2027-05-31 |  |  |  |  |  |  |
| CO-SD-ML-TF-130 |  | Testing Work for Pipes of Storm Drainage Network for Alignment-RD-03-3 | 5d | 2027-05-26 | 2027-05-31 | CO-SD-ML-220, CO-SD-PO-110-P1, CO-SD-PO-110-P2, CO-SD-ML-TF-100 | -106d | 0d | Skilled Labor [48 h]; Plumber [48 h]; Depth Between 0m to 1.50m; Depth Between 1.50m to 2.50m; Depth Between 2.50m to 3.50m; Depth > 3.50m; Depth Between 1.50m to 2.50m [31.66]; Depth Between 3.50m to 4.50m; Depth > 4.50m; GRP Pipe, 900mm diameter with Depth Between 3.51m to 4.50m | 9,655.64 | SD |
|  | 10 | **Sewage Network** |  |  |  |  |  |  |  |  |  |
|  | TF | **Testing and Finishes** |  |  |  |  |  |  |  |  |  |
|  | 9 | **Potable Water Network** |  | 2027-04-26 | 2027-05-03 |  |  |  |  |  |  |
|  | TF | **Testing and Finishes** |  | 2027-04-26 | 2027-05-03 |  |  |  |  |  |  |
| CO-PW-TF-200 |  | Fire Hydrant Finishies (S.Box + Safety + Marker Post ) of Potable Water Network for Alignment-RD-03-3 | 3d | 2027-04-26 | 2027-04-28 | CO-PW-FH-250, ENG-MT-PW-TF-A-100, CO-PW-TF-120 SS | -90d | 0d | Skilled Labor [24 h]; Unskilled Labor [48 h]; Plumber [48 h]; 3-outlet fire hydrant (2 x 2.5 inch and 1 x 4.5 inch) in the form of a separate dry vacuum cylinder, complete according to drawings. [0.3] | 2,248.53 | PW |
| CO-PW-TF-190 |  | Testing of Potable Water Network for Alignment-RD-03-3 | 3d | 2027-04-29 | 2027-05-02 | CO-PW-ML-220, CO-PW-TF-210 SS, CO-PW-TF-110 SS, CO-IR-ML-390 | -78d | 0d | Unskilled Labor [24 h]; Plumber [24 h]; Depth Between 0m to 1.50m; Depth Between 1.50m to 2.50m; Depth > 2.50m; Depth Between 0m to 1.50m [7.6]; Depth Between 1.50m to 2.50m [25.25] | 6,385.6 | PW |
| CO-PW-TF-210 |  | Final Finishes works and Covers for Valves and Valve Chambers for Alignment-RD-03-3 | 4d | 2027-04-29 | 2027-05-03 | CO-PW-VC-310, ENG-MT-PW-TF-A-100, PRO-PW-1DL-130, PRO-R25-PW-DL-130, CO-PW-TF-200, CO-PW-TF-100 SS | -83d | 0d | Unskilled Labor [24 h]; Plumber [24 h]; Depth Between 0m to 1.50m; Depth Between 1.50m to 2.50m; Depth > 2.50m; Depth Between 0m to 1.50m [9.49]; Depth Between 1.50m to 2.50m [31.57]; Gate valves Dia 50 mm; Gate valves Dia 100 mm; Gate valves Dia 150 mm; Gate valves Dia 250 mm; Air valves with Dia 50 mm; Washout valve Dia 100 mm [0.3]; Wash out chamber (2500x 2500mm) [0.3]; Air valve chamber (1000x 1000 mm); Flow meter chamber (1500x 2500 mm); Flow meter dia 100 mm | 14,608.56 | PW |

| ID | WBS | Activity | Duration | Start | Finish | Predecessors | Total float | Free float | Resources | Cost | 01- Network | Activity ID N |
| --- | --- | --- | --- | --- | --- | --- | --- | --- | --- | --- | --- | --- |
|  | 1 | **Treated Sewage Effluent (Tse)** |  | 2027-05-22 | 2027-05-27 |  |  |  |  |  |  |  |
|  | TF | **Testing and Finishes** |  | 2027-05-22 | 2027-05-27 |  |  |  |  |  |  |  |
| CO-TSE-TF-200 |  | Final Testing (pressure tests) of Treated Sewage Effluent (Tse) for Alignment-RD-03-3 | 6d | 2027-05-22 | 2027-05-27 | CO-TSE-ML-330, CO-TSE-TF-170, CO-PW-TF-190 | -89d | 0d | Skilled Labor [48 h]; Plumber [48 h]; Depth Between 0m to 1.50m; Depth Between 1.50m to 2.50m; Depth > 2.50m; Depth Between 0m to 1.50m [20.9] | 1,509.9 | TSE |  |
|  | 13 | **Irrigation Network** |  | 2027-04-29 | 2027-05-05 |  |  |  |  |  |  |  |
|  | TF | **Testing and Finishes** |  | 2027-04-29 | 2027-05-05 |  |  |  |  |  |  |  |
| CO-IR-TF-210 |  | Final Testing (pressure tests) of Irrigation Network for Alignment-RD-03-3 | 6d | 2027-04-29 | 2027-05-05 | CO-IR-ML-390, CO-PW-TF-190 SS | -75d | 1d | Skilled Labor [8 h]; Plumber [8 h]; pipe line O.D 32 mm PN 10, in depth 0 to 1.5 m [82.09]; pipe line O.D 40 mm PN 10, in depth 0 to 1.5 m [74.63]; pipe line O.D 50 mm PN 10, in depth 0 to 1.5 m [22.39] | 4,614.5 | IR |  |
|  | 14 | **Medium Voltage Network** |  | 2027-04-01 | 2027-04-07 |  |  |  |  |  |  |  |
|  | TT | **Termination and Testing Works** |  | 2027-04-01 | 2027-04-07 |  |  |  |  |  |  |  |
| CO-MV-TF-250 |  | Testing and Termination Works of Medium Voltage Network for Alignment-RD-03-3 | 6d | 2027-04-01 | 2027-04-07 | CO-MV-ML-360 | -72d | 14d | Skilled Labor [48 h]; Electrician [48 h]; Duct bank for (33) cables; Duct bank for (21) cables; Duct bank for (15) cables [0.72]; HV Cable Road Crossing | 509.87 | MV |  |
|  | 6 | **Low Voltage Network** |  | 2027-05-04 | 2027-05-10 |  |  |  |  |  |  |  |
|  | TT | **Termination and Testing Works** |  | 2027-05-04 | 2027-05-10 |  |  |  |  |  |  |  |
| CON-LV-TT-160 |  | Testing and Termination Works for Substation Low Voltage Panel Boards of Low Voltage Network for Alignment-RD-03-3 | 6d | 2027-05-04 | 2027-05-10 | CON-LV-TT-110, CO-MV-TF-250, PRO-LV-DP-1DL-100, PRO-LV-DP-DL-100, CON-LV-DP-120, CON-LV-DP-190, CON-LV-DP-110, PRO-LV-TT-1DL-100, PRO-LV-TT-DL-100, CON-LV-HC-210, CON-LV-ML-210, CON-LV-TT-100 | -73d | 9d | Skilled Labor [96 h]; Electrician [96 h]; 4C-300mm2 CU/XLPE / PVC ARMORED CABLE [1.88]; 4C-240mm2 CU/XLPE / PVC ARMORED CABLE [1.07]; 4C-185mm2 CU/XLPE / PVC ARMORED CABLE [1.07]; 4C-50mm2 CU/XLPE / PVC ARMORED CABLE [4.03]; 4C-16mm2 CU/XLPE / PVC ARMORED CABLE [92.82]; 4C-16MM2 CU/XLPE / PVC CABLE [37.48]; 1Cx150sq.mm2,Cu, PVC wire [1.88]; 1Cx120sq.mm2,Cu, PVC wire [2.42]; 1Cx95sq.mm,Cu, PVC wire [1.07]; 1Cx70sq.mm2,Cu, PVC wire [0.54]; 1Cx25sq.mm2,Cu, PVC wire [2.42]; 1Cx16sq.mm2,Cu, PVC wire [92.82]; 1Cx10sq.mm2,Cu, PVC wire [0.81] | 8,454.2 | LV |  |
|  | 1 | **Earthing System Works** |  |  |  |  |  |  |  |  |  |  |
|  | 12 | **Street Lighting Network** |  | 2027-05-03 | 2027-05-30 |  |  |  |  |  |  |  |
|  | TR | **Termination and Testing Works** |  | 2027-05-03 | 2027-05-30 |  |  |  |  |  |  |  |
| CO-SL-LP-470 |  | Installation Works for Lighting Fixtures With Drop Wire of Street Lighting Network for Alignment-RD-03-3 | 6d | 2027-05-03 | 2027-05-09 | PRO-R25-SL-DL-160, CO-SL-CL-360, ENG-MT-SL-DB-A-100, MS-CS-SL SS, CO-EW-230, MS-MM-130, MS-MM-140, CO-SL-LP-480, ENG-MT-SL-A-120, PRO-R25-SL-DL-140, CO-SL-LP-370, CO-SL-LP-580 | -86d | 1d | Unskilled Labor [48 h]; Electrician [48 h]; Man Left [48 h]; Street Lighting( LED) Luminaire of Output ? 20,965 lumen complete with control gear and lamp, (129.1) WATT. [14.93] | 5,859.9 | SL |  |
| CO-SL-TF-490 |  | Testing Works for Lighting Poles of Street Lighting Network for Alignment-RD-03-3 | 6d | 2027-05-24 | 2027-05-30 | PRO-R25-SL-DL-160, CO-SL-LP-480, CO-SL-CL-360, ENG-MT-SL-DB-A-100, MS-CS-SL SS, CO-EW-230, MS-MM-130, MS-MM-140, CO-SL-LP-470, CO-SL-ES-290, PRO-R25-SL-DL-130, CO-SL-TF-410, CO-SL-TF-570 | -85d | 14d | Unskilled Labor [48 h]; Electrician [48 h]; Lighting poles with 1 arm, height of (12) meters, including the power distribution box, cables, and RCC foundation. [2.24]; Lighting poles with 2 arms, height of (12) meters, including the power distribution box, cables, and RCC foundation. | 5,394.18 | SL | CO-R26.S11-SL-200 |
|  | ES | **Earthing System Works** |  | 2027-05-04 | 2027-05-22 |  |  |  |  |  |  |  |
| CO-SL-ES-280 |  | Install Earthing System Works for Lighting Poles of Street Lighting Network for Alignment-RD-03-3 | 6d | 2027-05-04 | 2027-05-10 | CO-SL-LP-470 SS, ENG-MT-SL-ES-A-100, PRO-R25-SL-DL-150, CO-SL-ES-240 SS, CO-SL-ES-320 SS | -87d | 5d | Unskilled Labor [96 h]; Electrician [48 h]; JCB [48 h]; Including earthing of lighting poles, masts, feeder pillars, unit substations and LV feeders. [5.22] | 601.26 | SL |  |
| CO-SL-ES-290 |  | Install Earthing System Works for Lighting Panel Boards of Street Lighting Network for Alignment-RD-03-3 | 6d | 2027-05-10 | 2027-05-22 | CO-SL-ES-280 SS, PRO-R25-SL-DL-150, CO-SL-ES-250, CO-SL-ES-330 | -86d | 1d | Unskilled Labor [96 h]; Electrician [48 h]; JCB [48 h]; Including earthing of lighting poles, masts, feeder pillars, unit substations and LV feeders. [5.22] | 601.26 | SL |  |
|  | 3 | **Telecom and Light Current Network** |  | 2027-04-29 | 2027-05-12 |  |  |  |  |  |  |  |
|  | 1 | **Testing and Finishes** |  | 2027-04-29 | 2027-05-12 |  |  |  |  |  |  |  |
| CO-TE-CTV-TF-260 |  | Testing and Interface modules with Telecom for Alignment-RD-03-3 | 6d | 2027-04-29 | 2027-05-05 | CO-TE-CTV-210, CO-TE-CTV-110, CO-TE-CTV-TF-140, CO-TE-CTV-TF-330 | -81d | 0d | Skilled Labor [48 h]; Electrician [48 h]; 2-ways ducts, 32mm diameter [29.37]; 2x3-ways ducts, 50mm diameter [93.13]; 8-ways ducts, 6 x 160mm & 2 x 100mm [6.99]; 2 PVC ducts 150x200 mm (60mm diameter); 4 PVC ducts 600x150 mm (60mm diameter); 8 PVC ducts 1000x300 mm (60mm diameter); 6 PVC ducts 600x800 mm (60mm diameter); Manhole Type 3 (1200 x 1200 x 2000) [1.12]; Manhole Type 1 (800 x 600 x 1200) [0.75] | 12,013.61 | CTV |  |
| CO-TE-CTV-TF-340 |  | Testing and Interface modules with CCTV, Telephone, MSN and Access Control for Alignment-RD-03-3 | 6d | 2027-05-06 | 2027-05-12 | CO-TE-CTV-210, CO-TE-CTV-110, CO-TE-CTV-TF-140, CO-TE-CTV-TF-330, CO-TE-CTV-TF-260 | -81d | 0d | Skilled Labor [48 h]; Electrician [48 h]; NVR Server with RAID (5, 6 or 10) to record all cameras storage 80TB with all hardware / software / licenses etc. [0.04]; VMS Server with RAID (5, 6 or 10) complete Hardware / Software with one Color Laser Printer and all associated accessories for central management. [0.04]; Licenses for Cameras, Workstations and Keyboards [0.01]; Work Station (MMI with two monitors each, for Monitoring for CCTV & ACS) [0.03]; Keyboard with joystick for CCTV with all accessories as per specification [0.03]; Pole mounted IP( PoE) Fixed camera, 5MP,IP 66, IR illumination, 3-8mm varifocal, auto iris lens type [0.9]; Wall mounted IP( PoE) Fixed camera, 5MP,IP 66, IR illumination, 3-8mm varifocal, auto iris lens type [1.1]; 5MP Dome camera ceiling Mounted IP (PoE) indoor [0.39]; 5MP PTZ Multi Sensor Camera IP(PoE) 360 Degree View Outdoor with accessories (IP 66) [0.16]; 8 Port Industrial PoE Switch 10/100BaseT (0 deg to +70 deg. Celsius) [0.25]; Filed Equipment cabinet (FEC), with fan and ventilation, NEMEX 4X ,door, minimum size (600x600x400mm), the cabinet/enclosure includes industrial switch and UPS. [0.25]; IP Phone Communication server (hot standby) 50 Port equipped, Gateway, Gatekeeper, H.323, SIP, redundant Power etc. [0.07]; IP Phone Voice gateway [0.03]; Voice IP Phone [0.03]; NMS Server for IP phone and NETWORK Elements [0.03]; NMS Workstation [0.03]; Firm Ware, software & licenses [0.03]; Data Cable [0.03]; Power Cable [0.03]; Layer 3, 24 Port non-PoE switch10/1000BaseT/LX (-40 deg to +70 deg. Celsius), stack module and associated accessories for utility Telecom Server room [0.04]; Layer 2, 24 Port non-PoE switch10/1000BaseT (-40 deg to +70 deg. Celsius), stack module and associated accessories for utility Telecom Server and Security Guard house room [0.13]; Network Management System Server [0.04]; Network Management System workstation [0.03]; 42U rack dimension (W x H x L) 800 x 2000 x 1000 mm [0.04]; 12U rack dimension (W x H x L) 600 x 625 x 600 mm [0.03]; 06C Optical Fiber SM [40.75]; 48C Optical Fiber SM [129.85]; 48 Core Splice Closure [0.16]; Optical fiber patch cord 5m [0.54]; Data Cable (STP CAT 6A) [231.04]; 3C Power Cable armored 1.5mm2 [231.04]; 3C Power Cable armored 2.5 mm2 [231.04]; UTP CAT6A Patch Cord 1m/3m/5m [0.52]; Access Control Unit [0.12]; Access Card Reader [0.12]; Magnetic Lock [0.12]; Break Glass [0.09]; Exit Push button [0.12]; Door Sensor [0.12]; Biometrics Reader [0.18]; Smart Card Printer [0.03]; Card Issue Work Station [0.03]; Photographic Camera with stand [0.03]; Interface modules with CCTV, Fire and other systems [0.03]; 1-ways ducts, 6 x 50mm diameter [11.42]; 6 PVC ducts 150x200 mm (60mm diameter) [2.58] | 45,354.58 | CTV |  |

| ID | WBS | Activity | Duration | Start | Finish | Predecessors | Complete | Remaining | Planned start | Planned finish | Total float | Free float | Resources | Cost | Actual cost | Planned % Upto date | 01- Network |
| --- | --- | --- | --- | --- | --- | --- | --- | --- | --- | --- | --- | --- | --- | --- | --- | --- | --- |
|  | EX | **External** |  | 2026-04-01 | 2027-05-26 |  |  |  |  |  |  |  |  |  |  |  |  |
|  | 2 | **External Road - 1 - 1** |  | 2026-04-01 | 2027-05-22 |  |  |  |  |  |  |  |  |  |  |  |  |
|  | EW | **Earthworks** |  | 2026-04-01 | 2026-12-15 |  |  |  |  |  |  |  |  |  |  |  |  |
|  | EW | **Earthworks** |  | 2026-04-01 | 2026-12-15 |  |  |  |  |  |  |  |  |  |  |  |  |
| CO-EW-250 |  | Excavation and Backfilling Works Upto Design Level for Earthworks for External Road - 1 - 1(Completed) | 67d | 2026-04-01 A | 2026-06-22 A | MS-CS-PS SS, MOB-30, MOB-20, MOB-80, MOB-40, MOB-50, MOB-60, MOB-10, MOB-70, PRE-CON-MDC-10, PRE-CON-MDC-20, PRE-CON-MDC-30, PRE-CON-MDC-40, PRE-CON-MDC-50, PRE-CON-MDC-60, PRE-CON-MDC-70, PRE-CON-MDC-80, MS-MM-100, MS-MM-130, MS-MM-140, MS-MM-150, CO-EW-270 SS | 100% |  |  |  |  |  | Skilled Labor [568.55 h]; Unskilled Labor [568.55 h]; Dozer [568.55 h]; Water Tanker [568.55 h]; Excavations (including Roads , Plots and Pond) [4514]; Embankments to the Site and Roads (including Roads , Plots and Pond) [79314] | 2,608,226.26 | 2,608,226.26 | 54.28 | FE |
| CO-EW-250_R |  | Excavation and Backfilling Works Upto Design Level for Earthworks for External Road - 1 - 1(Remaining) | 8d | 2026-12-07 | 2026-12-15 | CO-EW-250, CO-EW-210_R, CO-SD-ML-160, MS-CS-PS SS, MOB-30, MOB-20, MOB-80, MOB-40, MOB-50, MOB-60, MOB-10, MOB-70, PRE-CON-MDC-10, PRE-CON-MDC-20, PRE-CON-MDC-30, PRE-CON-MDC-40, PRE-CON-MDC-50, PRE-CON-MDC-60, PRE-CON-MDC-70, PRE-CON-MDC-80, MS-MM-100, MS-MM-130, MS-MM-140, MS-MM-150 |  |  |  |  | -43d | 0d | Skilled Labor [487.45 h]; Unskilled Labor [487.45 h]; Dozer [487.45 h]; Water Tanker [487.45 h]; Excavations (including Roads , Plots and Pond) [1287]; Embankments to the Site and Roads (including Roads , Plots and Pond) [19386] | 638,908.38 |  | 54.28 | FE |
|  | RD | **Road Works** |  | 2026-10-28 | 2027-05-22 |  |  |  |  |  |  |  |  |  |  |  |  |
|  | 3 | **Road 01** |  | 2026-10-28 | 2027-05-22 |  |  |  |  |  |  |  |  |  |  |  |  |
|  | RD | **Pre-Bituminous Construction** |  | 2026-10-28 | 2027-04-15 |  |  |  |  |  |  |  |  |  |  |  |  |
| CO-RD-PB-240 |  | Subgrade Layer for Road Works for External Road - 1 - 1 | 8d | 2026-10-28 A | 2027-04-05 | CO-EW-250_R, ENG-MS-RD-A-20, ENG-MS-RD-A-30, ENG-MS-RD-A-40, PRO-R25-RD-DL-100, ENG-MS-RD-A-10, ENG-SH-RD-A-100, ENG-SH-RD-A-110, MS-CS-RD SS, PRO-RD-1DL-100, MS-MM-130, MS-MM-140, CO-RD-PB-280, MS-MM-120 | 69% | 8d | 2027-03-30 | 2027-04-07 | -74d | 0d | Skilled Labor [80 h]; Unskilled Labor [80 h]; Water Tanker [80 h]; Grader [80 h]; Loader [80 h]; Compactor [80 h]; Subgrade [8129.03] | 259,904.59 | 179,045.44 |  | RD |
| CO-RD-PB-250 |  | Aggregate Base Course Layer for Road Works for External Road - 1 - 1 | 9d | 2026-10-29 A | 2027-04-15 | CO-RD-PB-240, PRO-R25-RD-DL-110, PRO-RD-1DL-110 | 69% | 9d | 2027-04-08 | 2027-04-18 | -74d | 0d | Skilled Labor [40 h]; Unskilled Labor [40 h]; Water Tanker [40 h]; Grader [40 h]; Loader [40 h]; Compactor [40 h]; Aggregate base course [4064.51] | 272,893.88 | 187,993.96 |  | RD |
|  | 1 | **Bituminous Construction** |  | 2027-04-17 | 2027-04-25 |  |  |  |  |  |  |  |  |  |  |  |  |
| CO-RD-B-260 |  | Bituminous Base Courses Layers for Road Works for External Road - 1 - 1 | 4d | 2027-04-17 | 2027-04-20 | PRO-R25-RD-DL-160, PRO-R25-RD-DL-160 FF, CO-RD-PB-250 SS, CO-RD-PB-250, CO-RD-PB-250 FF, PRO-RD-1DL-120, PRO-RD-1DL-120 FF, PRO-R25-RD-DL-170, PRO-RD-1DL-130 |  |  |  |  | -74d | 0d | Unskilled Labor [80 h]; Asphalt Cutter [40 h]; Asphalt Paver [40 h]; Bituminous base course (Grading I - Class A), including Prime Coat (MC1) [1355.72] | 548,740.32 |  |  | RD |
| CON-RD-MR-250 |  | Preparation of Asphaltic Wearing Course Layer for Roads Network for External Road - 1 - 1 | 4d | 2027-04-21 | 2027-04-25 | PRO-RD-1DL-190, PRO-RD-1DL-190 FF, PRO-RD-DL-210, PRO-RD-DL-210 FF, CO-RD-B-260 SS, CO-RD-B-260, CO-RD-B-260 FF, PRO-RD-DL-200, PRO-RD-1DL-180 |  |  |  |  | -65d | 10d | Unskilled Labor [128 h]; Asphalt Cutter [64 h]; Asphalt Paver [64 h]; Bituminous concrete wearing course, (Grading I - Class A), including tack coat (RC2) [1355.72] | 553,945.05 |  |  | RD |
|  | LS | **Pavement Works** |  | 2027-04-21 | 2027-05-06 |  |  |  |  |  |  |  |  |  |  |  |  |
| CO-RD-PV-260 |  | Fixing of Curbstone for Sidewalks Pavement for External Road - 1 - 1 | 8d | 2027-04-21 | 2027-04-29 | ENG-MS-HS-A-10, PRO-R25-RD-DL-130, PRO-RD-1DL-150, CO-RD-B-260 |  |  |  |  | -74d | 0d | Pavement Labor [768 h]; Bobcat [192 h]; JCB [192 h]; Precast Concrete Curbstone 150X300X900 Type (K1-A) [3835.34]; Precast Concrete Curbstone 100X200X500 Type (K4) [1505.18]; Precast Concrete Curbstone 150X300X500 Type (K1-B) [332.06]; Precast Concrete Curbstone Type (K1-C) [23.24]; Flush Kerb Type (D) [42.06] | 183,453.81 |  |  | RD |
| CO-RD-PV-270 |  | Fixing of Interlock Tiles for Sidewalks Pavement for External Road - 1 - 1 | 6d | 2027-05-01 | 2027-05-06 | ENG-MS-HS-A-10, PRO-R25-RD-DL-120, PRO-RD-1DL-140, CO-RD-PV-260 |  |  |  |  | -74d | 0d | Pavement Labor [440 h]; Bobcat [240 h]; JCB [240 h]; 60mm thick [2665.22]; 80mm thick | 117,588.35 |  |  | RD |
|  | TS | **Traffic Signs Boards and Roads Marking** |  | 2027-05-08 | 2027-05-22 |  |  |  |  |  |  |  |  |  |  |  |  |
| CO-RD-F-RM-230 |  | Application of Road Marking Works For Road Works for External Road - 1 - 1 | 2d | 2027-05-08 | 2027-05-09 | CO-RD-PV-270, ENG-MS-MRK-A-10, PRO-R25-RD-DL-150, ENG-SH-MRK-A-110, PRO-RD-1DL-170, CO-RD-PV-260, CON-RD-MR-250 |  |  |  |  | -74d | 5d | Skilled Labor [24 h]; Road Painter [24 h]; Retroreflective Thermoplastic White Traffic lines [337.6]; Retroreflective Thermoplastic Yellow, Traffic lines [508.43]; Precast Concrete Blister Warning Tactile Paver Brown Finish 300*300*60mm [8.39] | 24,799.27 |  |  | RD |
| CO-RD-F-TS-170 |  | Installation Works of Traffic Signs Boards For Road Works for External Road - 1 - 1 | 1d | 2027-05-22 | 2027-05-22 | CO-RD-F-RM-230, ENG-MS-TSB-A-10, PRO-R25-RD-DL-140, ENG-SH-TSB-A-100, PRO-RD-1DL-160 |  |  |  |  | -79d | 5d | Unskilled Labor [32 h]; Traffic signs, ground mounted, Sheet Aluminum, (breakaway) Single post IPE, with all accessories [20.9] | 13,254.5 |  |  | RD |
|  | 4 | **External Road - 1 - 2** |  | 2026-04-18 | 2027-05-24 |  |  |  |  |  |  |  |  |  |  |  |  |
|  | EW | **Earthworks** |  | 2026-04-18 | 2027-01-05 |  |  |  |  |  |  |  |  |  |  |  |  |
|  | EW | **Earthworks** |  | 2026-04-18 | 2027-01-05 |  |  |  |  |  |  |  |  |  |  |  |  |
| CO-EW-280 |  | Excavation and Backfilling Works Upto Design Level for Earthworks for External Road - 1 - 2(Completed) | 53d | 2026-04-18 A | 2026-06-22 A | MS-CS-PS SS, MOB-30, MOB-20, MOB-80, MOB-40, MOB-50, MOB-60, MOB-10, MOB-70, PRE-CON-MDC-10, PRE-CON-MDC-20, PRE-CON-MDC-30, PRE-CON-MDC-40, PRE-CON-MDC-50, PRE-CON-MDC-60, PRE-CON-MDC-70, PRE-CON-MDC-80, MS-MM-100, MS-MM-130, MS-MM-140, MS-MM-150, CO-EW-250 SS | 100% |  |  |  |  |  | Skilled Labor [817.3 h]; Unskilled Labor [817.3 h]; Dozer [817.3 h]; Water Tanker [817.3 h]; Excavations (including Roads , Plots and Pond) [6184]; Embankments to the Site and Roads (including Roads , Plots and Pond) [17716.8] | 622,154.62 | 622,154.62 | 18 | FE |
| CO-EW-280_R |  | Excavation and Backfilling Works Upto Design Level for Earthworks for External Road - 1 - 2(Remaining) | 21d | 2026-09-26 A | 2027-01-05 | MS-CS-PS SS, MOB-30, MOB-20, MOB-80, MOB-40, MOB-50, MOB-60, MOB-10, MOB-70, PRE-CON-MDC-10, PRE-CON-MDC-20, PRE-CON-MDC-30, PRE-CON-MDC-40, PRE-CON-MDC-50, PRE-CON-MDC-60, PRE-CON-MDC-70, PRE-CON-MDC-80, MS-MM-100, MS-MM-130, MS-MM-140, MS-MM-150, CO-EW-250_R SS, CO-EW-280, CO-EW-210_R, CO-EW-250_R | 28% | 18d | 2026-11-12 | 2026-12-06 | -43d | 13d | Skilled Labor [862.7 h]; Unskilled Labor [862.7 h]; Dozer [862.7 h]; Water Tanker [862.7 h]; Excavations (including Roads , Plots and Pond) [2333]; Embankments to the Site and Roads (including Roads , Plots and Pond) [127183] | 4,144,912.47 | 592,130.35 | 18 | FE |

| ID | WBS | Activity | Duration | Start | Finish | Predecessors | Complete | Remaining | Planned start | Planned finish | Total float | Free float | Resources | Cost | Actual cost | 01- Network | Planned % Upto date |
| --- | --- | --- | --- | --- | --- | --- | --- | --- | --- | --- | --- | --- | --- | --- | --- | --- | --- |
|  | RD | **Road Works** |  | 2027-03-28 | 2027-05-24 |  |  |  |  |  |  |  |  |  |  |  |  |
|  | 3 | **Road 01** |  | 2027-03-28 | 2027-05-24 |  |  |  |  |  |  |  |  |  |  |  |  |
|  | RD | **Pre-Bituminous Construction** |  | 2027-03-28 | 2027-04-10 |  |  |  |  |  |  |  |  |  |  |  |  |
| CO-RD-PB-300 |  | Subgrade Layer for Road Works for External Road - 1 - 2 | 6d | 2027-03-28 | 2027-04-03 | CO-EW-280_R, ENG-MS-RD-A-20, ENG-MS-RD-A-30, ENG-MS-RD-A-40, PRO-R25-RD-DL-100, ENG-MS-RD-A-10, ENG-SH-RD-A-100, ENG-SH-RD-A-110, MS-CS-RD SS, PRO-RD-1DL-100, MS-MM-130, MS-MM-140, CO-RD-PB-240 SS |  |  |  |  | -74d | 0d | Skilled Labor [112 h]; Unskilled Labor [112 h]; Water Tanker [112 h]; Grader [112 h]; Loader [112 h]; Compactor [112 h]; Subgrade [11872.8] | 379,600.19 |  | RD |  |
| CO-RD-PB-310 |  | Aggregate Base Course Layer for Road Works for External Road - 1 - 2 | 6d | 2027-04-04 | 2027-04-10 | CO-RD-PB-300, PRO-R25-RD-DL-110, PRO-RD-1DL-110 |  |  |  |  | -74d | 0d | Skilled Labor [56 h]; Unskilled Labor [56 h]; Water Tanker [56 h]; Grader [56 h]; Loader [56 h]; Compactor [56 h]; Aggregate base course [5936.37] | 398,572.25 |  | RD |  |
|  | 1 | **Bituminous Construction** |  | 2027-04-11 | 2027-04-22 |  |  |  |  |  |  |  |  |  |  |  |  |
| CO-RD-B-320 |  | Bituminous Base Courses Layers for Road Works for External Road - 1 - 2 | 7d | 2027-04-11 | 2027-04-18 | PRO-R25-RD-DL-160, PRO-R25-RD-DL-160 FF, CO-RD-PB-310 SS, CO-RD-PB-310, CO-RD-PB-310 FF, PRO-RD-1DL-120, PRO-RD-1DL-120 FF, PRO-R25-RD-DL-170, PRO-RD-1DL-130 |  |  |  |  | -74d | 0d | Unskilled Labor [112 h]; Asphalt Cutter [56 h]; Asphalt Paver [56 h]; Bituminous base course (Grading I - Class A), including Prime Coat (MC1) [1980.09] | 801,461.84 |  | RD |  |
| CON-RD-MR-310 |  | Preparation of Asphaltic Wearing Course Layer for Roads Network for External Road - 1 - 2 | 4d | 2027-04-19 | 2027-04-22 | PRO-RD-1DL-190, PRO-RD-1DL-190 FF, PRO-RD-DL-210, PRO-RD-DL-210 FF, CO-RD-B-320 SS, CO-RD-B-320, CO-RD-B-320 FF, PRO-RD-DL-200, PRO-RD-1DL-180 |  |  |  |  | -66d | 8d | Unskilled Labor [128 h]; Asphalt Cutter [64 h]; Asphalt Paver [64 h]; Bituminous concrete wearing course, (Grading I - Class A), including tack coat (RC2) [1980.09] | 809,063.6 |  | RD |  |
|  | LS | **Pavement Works** |  | 2027-04-19 | 2027-05-02 |  |  |  |  |  |  |  |  |  |  |  |  |
| CO-RD-PV-320 |  | Fixing of Curbstone for Sidewalks Pavement for External Road - 1 - 2 | 6d | 2027-04-19 | 2027-04-25 | ENG-MS-HS-A-10, PRO-R25-RD-DL-130, PRO-RD-1DL-150, CO-RD-B-320 |  |  |  |  | -74d | 0d | Pavement Labor [960 h]; Bobcat [240 h]; JCB [240 h]; Precast Concrete Curbstone 150X300X900 Type (K1-A) [5601.66]; Precast Concrete Curbstone 100X200X500 Type (K4) [2198.36]; Precast Concrete Curbstone 150X300X500 Type (K1-B) [484.99]; Precast Concrete Curbstone Type (K1-C) [33.96]; Flush Kerb Type (D) [61.43] | 267,941.12 |  | RD |  |
| CO-RD-PV-330 |  | Fixing of Interlock Tiles for Sidewalks Pavement for External Road - 1 - 2 | 6d | 2027-04-26 | 2027-05-02 | CO-RD-PV-320, ENG-MS-HS-A-10, PRO-R25-RD-DL-120, PRO-RD-1DL-140 |  |  |  |  | -74d | 0d | Pavement Labor [1160 h]; Bobcat [360 h]; JCB [360 h]; 60mm thick [3892.64]; 80mm thick | 171,741.41 |  | RD |  |
|  | TS | **Traffic Signs Boards and Roads Marking** |  | 2027-05-03 | 2027-05-24 |  |  |  |  |  |  |  |  |  |  |  |  |
| CO-RD-F-RM-260 |  | Application of Road Marking Works For Road Works for External Road - 1 - 2 | 4d | 2027-05-03 | 2027-05-06 | CO-RD-PV-330, ENG-MS-MRK-A-10, PRO-R25-RD-DL-150, ENG-SH-MRK-A-110, PRO-RD-1DL-170, CO-RD-PV-320, CON-RD-MR-310 |  |  |  |  | -74d | 7d | Skilled Labor [48 h]; Road Painter [48 h]; Retroreflective Thermoplastic White Traffic lines [493.07]; Retroreflective Thermoplastic Yellow, Traffic lines [742.58]; Precast Concrete Blister Warning Tactile Paver Brown Finish 300*300*60mm [12.6] | 36,261.37 |  | RD |  |
| CO-RD-F-TS-200 |  | Installation Works of Traffic Signs Boards For Road Works for External Road - 1 - 2 | 3d | 2027-05-22 | 2027-05-24 | CO-RD-F-RM-260, ENG-MS-TSB-A-10, PRO-R25-RD-DL-140, ENG-SH-TSB-A-100, PRO-RD-1DL-160 |  |  |  |  | -81d | 3d | Unskilled Labor [48 h]; Traffic signs, ground mounted, Sheet Aluminum, (breakaway) Single post IPE, with all accessories [31.34] | 19,881.75 |  | RD |  |
|  | 1 | **External Road - 2** |  | 2026-05-09 | 2027-05-23 |  |  |  |  |  |  |  |  |  |  |  |  |
|  | EW | **Earthworks** |  | 2026-05-09 | 2027-02-14 |  |  |  |  |  |  |  |  |  |  |  |  |
|  | EW | **Earthworks** |  | 2026-05-09 | 2027-02-14 |  |  |  |  |  |  |  |  |  |  |  |  |
| CO-EW-260 |  | Excavation and Backfilling Works Upto Design Level for Earthworks for External Road - 2(Completed) | 35d | 2026-05-09 A | 2026-06-22 A | MS-CS-PS SS, MOB-30, MOB-20, MOB-80, MOB-40, MOB-50, MOB-60, MOB-10, MOB-70, PRE-CON-MDC-10, PRE-CON-MDC-20, PRE-CON-MDC-30, PRE-CON-MDC-40, PRE-CON-MDC-50, PRE-CON-MDC-60, PRE-CON-MDC-70, PRE-CON-MDC-80, MS-MM-100, MS-MM-130, MS-MM-140, MS-MM-150 | 100% |  |  |  |  |  | Skilled Labor [327.95 h]; Unskilled Labor [327.95 h]; Dozer [327.95 h]; Water Tanker [327.95 h]; Excavations (including Roads , Plots and Pond) [2377]; Embankments to the Site and Roads (including Roads , Plots and Pond) [40450] | 1,330,762.78 | 1,330,762.78 | FE | 5.7 |
| CO-EW-260_R |  | Excavation and Backfilling Works Upto Design Level for Earthworks for External Road - 2(Remaining) | 21d | 2027-01-21 | 2027-02-14 | PRE-CON-MDC-80, MS-MM-100, MS-MM-130, MS-MM-140, MS-MM-150, CO-EW-260, CO-EW-280, CO-EW-210_R, CO-EW-280_R, CO-EW-210_R01, MS-CS-PS SS, MOB-30, MOB-20, MOB-80, MOB-40, MOB-50, MOB-60, MOB-10, MOB-70, PRE-CON-MDC-10, PRE-CON-MDC-20, PRE-CON-MDC-30, PRE-CON-MDC-40, PRE-CON-MDC-50, PRE-CON-MDC-60, PRE-CON-MDC-70 |  |  |  |  | -56d | 0d | Skilled Labor [536.05 h]; Unskilled Labor [536.05 h]; Dozer [536.05 h]; Water Tanker [536.05 h]; Excavations (including Roads , Plots and Pond) [1820]; Embankments to the Site and Roads (including Roads , Plots and Pond) [30950] | 1,018,232.3 |  | FE | 5.7 |
|  | RD | **Road Works** |  | 2026-10-27 | 2027-05-23 |  |  |  |  |  |  |  |  |  |  |  |  |
|  | 3 | **Road 01** |  | 2026-10-27 | 2027-05-23 |  |  |  |  |  |  |  |  |  |  |  |  |
|  | RD | **Pre-Bituminous Construction** |  | 2026-10-27 | 2027-03-28 |  |  |  |  |  |  |  |  |  |  |  |  |
| CO-RD-PB-260 |  | Subgrade Layer for Road Works for External Road - 2 | 7d | 2026-10-27 A | 2027-03-28 | CO-EW-260_R SS, ENG-MS-RD-A-20, ENG-MS-RD-A-30, ENG-MS-RD-A-40, PRO-R25-RD-DL-100, ENG-MS-RD-A-10, ENG-SH-RD-A-100, ENG-SH-RD-A-110, MS-CS-RD SS, PRO-RD-1DL-100, MS-MM-130, MS-MM-140, CO-TE-CTV-TF-360 SS | 56% | 7d | 2027-03-23 | 2027-03-30 | -75d | 0d | Skilled Labor [56 h]; Unskilled Labor [56 h]; Water Tanker [56 h]; Grader [56 h]; Loader [56 h]; Compactor [56 h]; Subgrade [5897.19] | 188,547.45 | 105,508.92 | RD |  |
| CO-RD-PB-270 |  | Aggregate Base Course Layer for Road Works for External Road - 2 | 4d | 2026-10-28 A | 2027-03-28 | CO-RD-PB-260 FF, CO-RD-PB-260 SS, PRO-R25-RD-DL-110, PRO-RD-1DL-110 | 51% | 4d | 2027-03-27 | 2027-03-30 | -75d | 0d | Skilled Labor [32 h]; Unskilled Labor [32 h]; Water Tanker [32 h]; Grader [32 h]; Loader [32 h]; Compactor [32 h]; Aggregate base course [2948.6] | 197,970.87 | 100,711.05 | RD |  |

| ID | WBS | Activity | Duration | Start | Finish | Predecessors | Complete | Remaining | Planned start | Planned finish | Total float | Free float | Resources | Cost | Actual cost | 01- Network | Planned % Upto date |
| --- | --- | --- | --- | --- | --- | --- | --- | --- | --- | --- | --- | --- | --- | --- | --- | --- | --- |
|  | 1 | **Bituminous Construction** |  | 2027-03-29 | 2027-04-20 |  |  |  |  |  |  |  |  |  |  |  |  |
| CO-RD-B-280 |  | Bituminous Base Courses Layers for Road Works for External Road - 2 | 10d | 2027-03-29 | 2027-04-08 | PRO-R25-RD-DL-160, PRO-R25-RD-DL-160 FF, CO-RD-PB-270 SS, CO-RD-PB-270, CO-RD-PB-270 FF, PRO-RD-1DL-120, PRO-RD-1DL-120 FF, PRO-R25-RD-DL-170, PRO-RD-1DL-130 |  |  |  |  | -75d | 0d | Unskilled Labor [96 h]; Asphalt Cutter [48 h]; Asphalt Paver [48 h]; Bituminous base course (Grading I - Class A), including Prime Coat (MC1) [983.51] | 398,084.87 |  | RD |  |
| CON-RD-MR-270 |  | Preparation of Asphaltic Wearing Course Layer for Roads Network for External Road - 2 | 10d | 2027-04-10 | 2027-04-20 | PRO-RD-1DL-190, PRO-RD-1DL-190 FF, PRO-RD-DL-210, PRO-RD-DL-210 FF, CO-RD-B-280 SS, CO-RD-B-280, CO-RD-B-280 FF, PRO-RD-DL-200, PRO-RD-1DL-180 |  |  |  |  | -73d | 0d | Unskilled Labor [96 h]; Asphalt Cutter [48 h]; Asphalt Paver [48 h]; Bituminous concrete wearing course, (Grading I - Class A), including tack coat (RC2) [983.51] | 401,860.66 |  | RD |  |
|  | LS | **Pavement Works** |  | 2027-04-10 | 2027-04-19 |  |  |  |  |  |  |  |  |  |  |  |  |
| CO-RD-PV-280 |  | Fixing of Curbstone for Sidewalks Pavement for External Road - 2 | 9d | 2027-04-10 | 2027-04-19 | ENG-MS-HS-A-10, PRO-R25-RD-DL-130, PRO-RD-1DL-150, CO-RD-B-280, CON-RD-MR-270 SS |  |  |  |  | -66d | 0d | Pavement Labor [512 h]; Bobcat [128 h]; JCB [128 h]; Precast Concrete Curbstone 150X300X900 Type (K1-A) [2782.34]; Precast Concrete Curbstone 100X200X500 Type (K4) [1091.93]; Precast Concrete Curbstone 150X300X500 Type (K1-B) [240.9]; Precast Concrete Curbstone Type (K1-C) [16.87]; Flush Kerb Type (D) [30.51] | 133,086.31 |  | RD |  |
| CO-RD-PV-290 |  | Fixing of Interlock Tiles for Sidewalks Pavement for External Road - 2 | 9d | 2027-04-10 | 2027-04-19 | ENG-MS-HS-A-10, PRO-R25-RD-DL-120 SS, PRO-RD-1DL-140, CO-RD-PV-280 SS |  |  |  |  | -66d | 11d | Pavement Labor [856 h]; Bobcat [176 h]; JCB [176 h]; 60mm thick [1933.48]; 80mm thick | 85,304.07 |  | RD |  |
|  | TS | **Traffic Signs Boards and Roads Marking** |  | 2027-05-03 | 2027-05-23 |  |  |  |  |  |  |  |  |  |  |  |  |
| CO-RD-F-RM-240 |  | Application of Road Marking Works For Road Works for External Road - 2 | 10d | 2027-05-03 | 2027-05-13 | PRO-RD-1DL-190, PRO-RD-DL-210, CO-RD-B-280 SS, CO-RD-B-280, CO-RD-PV-290, ENG-MS-MRK-A-10, PRO-R25-RD-DL-150, ENG-SH-MRK-A-110, PRO-RD-1DL-170, CO-RD-PV-280, CON-RD-MR-270 |  |  |  |  | -77d | 3d | Skilled Labor [16 h]; Road Painter [16 h]; Retroreflective Thermoplastic White Traffic lines [244.91]; Retroreflective Thermoplastic Yellow, Traffic lines [368.84]; Precast Concrete Blister Warning Tactile Paver Brown Finish 300*300*60mm [6] | 17,980.34 |  | RD |  |
| CO-RD-F-TS-180 |  | Installation Works of Traffic Signs Boards For Road Works for External Road - 2 | 2d | 2027-05-22 | 2027-05-23 | PRO-RD-1DL-190, PRO-RD-DL-210, CO-RD-B-280 SS, CO-RD-B-280, ENG-MS-TSB-A-10, PRO-R25-RD-DL-140, ENG-SH-TSB-A-100, PRO-RD-1DL-160, CON-RD-MR-270 |  |  |  |  | -83d | 0d | Unskilled Labor [32 h]; Traffic signs, ground mounted, Sheet Aluminum, (breakaway) Single post IPE, with all accessories [14.93] | 9,467.5 |  | RD |  |
|  | 3 | **External Road - 3** |  | 2026-05-09 | 2027-05-26 |  |  |  |  |  |  |  |  |  |  |  |  |
|  | EW | **Earthworks** |  | 2026-05-09 | 2027-02-22 |  |  |  |  |  |  |  |  |  |  |  |  |
|  | EW | **Earthworks** |  | 2026-05-09 | 2027-02-22 |  |  |  |  |  |  |  |  |  |  |  |  |
| CO-EW-270 |  | Excavation and Backfilling Works Upto Design Level for Earthworks for External Road - 3(Completed) | 35d | 2026-05-09 A | 2026-06-22 A | MS-CS-PS SS, MOB-30, MOB-20, MOB-80, MOB-40, MOB-50, MOB-60, MOB-10, MOB-70, PRE-CON-MDC-10, PRE-CON-MDC-20, PRE-CON-MDC-30, PRE-CON-MDC-40, PRE-CON-MDC-50, PRE-CON-MDC-60, PRE-CON-MDC-70, PRE-CON-MDC-80, MS-MM-100, MS-MM-130, MS-MM-140, MS-MM-150, CO-EW-260 SS | 100% |  |  |  |  |  | Skilled Labor [695.48 h]; Unskilled Labor [695.48 h]; Dozer [695.48 h]; Water Tanker [695.48 h]; Excavations (including Roads , Plots and Pond) [5304]; Embankments to the Site and Roads (including Roads , Plots and Pond) [90238] | 2,968,745.66 | 2,968,745.66 | FE | 8 |
| CO-EW-270_R |  | Excavation and Backfilling Works Upto Design Level for Earthworks for External Road - 3(Remaining) | 21d | 2026-08-23 A | 2027-02-22 | MS-CS-PS SS, MOB-30, MOB-20, MOB-80, MOB-40, MOB-50, MOB-60, MOB-10, MOB-70, PRE-CON-MDC-10, PRE-CON-MDC-20, PRE-CON-MDC-30, PRE-CON-MDC-40, PRE-CON-MDC-50, PRE-CON-MDC-60, PRE-CON-MDC-70, PRE-CON-MDC-80, MS-MM-100, MS-MM-130, MS-MM-140, MS-MM-150, CO-EW-260_R SS, CO-EW-270, CO-EW-260_R | 68% | 7d | 2026-12-31 | 2027-01-24 | -56d | 19d | Skilled Labor [1152.52 h]; Unskilled Labor [1152.52 h]; Dozer [1152.52 h]; Water Tanker [1152.52 h]; Excavations (including Roads , Plots and Pond) [4138]; Embankments to the Site and Roads (including Roads , Plots and Pond) [70412] | 2,316,483.72 | 1,868,811.66 | FE | 8 |
|  | TE | **Telecom and Light Current Network** |  | 2027-02-02 | 2027-03-27 |  |  |  |  |  |  |  |  |  |  |  |  |
|  | PD | **Ducts Works** |  |  |  |  |  |  |  |  |  |  |  |  |  |  |  |
|  | MH | **Manholes Works** |  | 2027-02-02 | 2027-03-20 |  |  |  |  |  |  |  |  |  |  |  |  |
| CO-TE-MH-290 |  | Excavation Works for Manholes of Telecom Network for External Road - 3 | 18d | 2027-02-02 | 2027-02-22 | PRO-R25-TE-DL-100 SS, ENG-MT-TE-A-100, PRO-TE-1DL-100, ENG-SH-TE-A-110, ENG-MS-TE-A-110, ENG-MT-TE-A-110, PRO-TE-1DL-110, MS-CS-TE SS, MS-MM-130, MS-MM-140 |  |  |  |  | -75d | 0d | Unskilled Labor [96 h]; JCB [48 h]; Manhole Type 2 (1600 x 1600 x 2000) [0.6] | 1,939.69 |  | TE |  |
| CO-TE-MH-300 |  | Installation Works for Manholes of Telecom Network for External Road - 3 | 19d | 2027-02-23 | 2027-03-20 | CO-TE-MH-290, PRO-R25-TE-DL-110 |  |  |  |  | -75d | 0d | Unskilled Labor [96 h]; Boom Truck [48 h]; Manhole Type 2 (1600 x 1600 x 2000) [6.57] | 21,336.57 |  | TE |  |
| CO-TE-MH-310 |  | Backfilling Works for Manholes of Telecom Network for External Road - 3 | 6d | 2027-03-14 | 2027-03-20 | CO-TE-MH-300 FF, CO-TE-MH-300 SS |  |  |  |  | -75d | 0d | Unskilled Labor [96 h]; Boom Truck [48 h]; Manhole Type 2 (1600 x 1600 x 2000) [1.79] | 5,819.06 |  | TE |  |
|  | 1 | **Testing and Finishes** |  | 2027-03-21 | 2027-03-27 |  |  |  |  |  |  |  |  |  |  |  |  |
| CO-TE-CTV-TF-360 |  | Testing and Interface modules with Telecom for External Road - 3 | 6d | 2027-03-21 | 2027-03-27 | PRO-R25-TE-DL-100 SS, ENG-SH-TE-A-110, ENG-MS-TE-A-110, ENG-MT-TE-A-100, PRO-TE-1DL-100, MS-CS-TE SS, MS-MM-130, MS-MM-140, CO-EW-270_R, CO-TE-MH-310 |  |  |  |  | -75d | 0d | Skilled Labor [48 h]; Electrician [48 h]; Manhole Type 2 (1600 x 1600 x 2000) [2.99] | 9,698.44 |  | CTV |  |
|  | RD | **Road Works** |  | 2026-09-08 | 2027-05-26 |  |  |  |  |  |  |  |  |  |  |  |  |
|  | 3 | **Road 01** |  | 2026-09-08 | 2027-05-26 |  |  |  |  |  |  |  |  |  |  |  |  |
|  | RD | **Pre-Bituminous Construction** |  | 2026-09-08 | 2027-04-05 |  |  |  |  |  |  |  |  |  |  |  |  |
| CO-RD-PB-280 |  | Subgrade Layer for Road Works for External Road - 3 | 6d | 2026-09-08 A | 2027-03-27 | PRO-R25-TE-DL-100 SS, ENG-SH-TE-A-110, ENG-MS-TE-A-110, ENG-MT-TE-A-100, PRO-TE-1DL-100, MS-CS-TE SS, CO-EW-270_R, ENG-MS-RD-A-20, ENG-MS-RD-A-30, ENG-MS-RD-A-40, PRO-R25-RD-DL-100, ENG-MS-RD-A-10, ENG-SH-RD-A-100, ENG-SH-RD-A-110, MS-CS-RD SS, PRO-RD-1DL-100, MS-MM-130, MS-MM-140, CO-RD-PB-260 SS, CO-TE-MH-310, CO-TE-CTV-TF-360 SS | 50% | 6d | 2027-01-28 | 2027-02-03 | -74d | 0d | Skilled Labor [128 h]; Unskilled Labor [128 h]; Water Tanker [128 h]; Grader [128 h]; Loader [128 h]; Compactor [128 h]; Subgrade [13209.7] | 422,344.43 | 134,284.08 | RD |  |
| CO-RD-PB-290 |  | Aggregate Base Course Layer for Road Works for External Road - 3 | 11d | 2026-10-19 A | 2027-04-05 | CO-RD-PB-280 SS, PRO-R25-RD-DL-110, PRO-RD-1DL-110, CO-RD-PB-270 SS | 32% | 11d | 2027-03-24 | 2027-04-05 | -72d | 3d | Skilled Labor [64 h]; Unskilled Labor [64 h]; Water Tanker [64 h]; Grader [64 h]; Loader [64 h]; Compactor [64 h]; Aggregate base course [6604.84] | 443,453.3 | 144,016.8 | RD |  |

| ID | WBS | Activity | Duration | Start | Finish | Predecessors | Complete | Planned start | Planned finish | Total float | Free float | Resources | Cost | Actual cost | 01- Network |
| --- | --- | --- | --- | --- | --- | --- | --- | --- | --- | --- | --- | --- | --- | --- | --- |
|  | 1 | **Bituminous Construction** |  | 2027-04-10 | 2027-05-05 |  |  |  |  |  |  |  |  |  |  |
| CO-RD-B-300 |  | Bituminous Base Courses Layers for Road Works for External Road - 3 | 12d | 2027-04-10 | 2027-04-22 | PRO-R25-RD-DL-160, PRO-R25-RD-DL-160 FF, CO-RD-PB-290 SS, CO-RD-PB-290, CO-RD-PB-290 FF, PRO-RD-1DL-120, PRO-RD-1DL-120 FF, CO-RD-PB-270 SS, CO-RD-PB-270, CO-RD-PB-270 FF, PRO-R25-RD-DL-170, PRO-RD-1DL-130, CO-RD-B-280 |  |  |  | -75d | 0d | Unskilled Labor [160 h]; Asphalt Cutter [80 h]; Asphalt Paver [80 h]; Bituminous base course (Grading I - Class A), including Prime Coat (MC1) [2203.04] | 891,705.28 |  | RD |
| CON-RD-MR-290 |  | Preparation of Asphaltic Wearing Course Layer for Roads Network for External Road - 3 | 11d | 2027-04-24 | 2027-05-05 | PRO-RD-1DL-190, PRO-RD-1DL-190 FF, PRO-RD-DL-210, PRO-RD-DL-210 FF, CO-RD-B-300 SS, CO-RD-B-300, CO-RD-B-300 FF, CO-RD-B-280 SS, CO-RD-B-280, CO-RD-B-280 FF, PRO-RD-DL-200, PRO-RD-1DL-180, CON-RD-MR-270 |  |  |  | -75d | 0d | Unskilled Labor [128 h]; Asphalt Cutter [64 h]; Asphalt Paver [64 h]; Bituminous concrete wearing course, (Grading I - Class A), including tack coat (RC2) [2203.04] | 900,162.99 |  | RD |
|  | LS | **Pavement Works** |  | 2027-04-24 | 2027-04-26 |  |  |  |  |  |  |  |  |  |  |
| CO-RD-PV-300 |  | Fixing of Curbstone for Sidewalks Pavement for External Road - 3 | 3d | 2027-04-24 | 2027-04-26 | ENG-MS-HS-A-10, PRO-R25-RD-DL-130, PRO-RD-1DL-150, CO-RD-B-300, CO-RD-PV-280 |  |  |  | -67d | 0d | Pavement Labor [1056 h]; Bobcat [264 h]; JCB [264 h]; Precast Concrete Curbstone 150X300X900 Type (K1-A) [6232.42]; Precast Concrete Curbstone 100X200X500 Type (K4) [2445.91]; Precast Concrete Curbstone 150X300X500 Type (K1-B) [539.6]; Precast Concrete Curbstone Type (K1-C) [37.78]; Flush Kerb Type (D) [68.34] | 298,112.09 |  | RD |
| CO-RD-PV-310 |  | Fixing of Interlock Tiles for Sidewalks Pavement for External Road - 3 | 3d | 2027-04-24 | 2027-04-26 | CO-RD-PV-300 SS, ENG-MS-HS-A-10, PRO-R25-RD-DL-120, PRO-RD-1DL-140, CO-RD-PV-300 FF, CO-RD-PV-290 SS |  |  |  | -64d | 11d | Pavement Labor [1448 h]; Bobcat [408 h]; JCB [408 h]; 60mm thick [4330.97]; 80mm thick | 191,080.24 |  | RD |
|  | TS | **Traffic Signs Boards and Roads Marking** |  | 2027-05-06 | 2027-05-26 |  |  |  |  |  |  |  |  |  |  |
| CO-RD-F-RM-250 |  | Application of Road Marking Works For Road Works for External Road - 3 | 5d | 2027-05-06 | 2027-05-11 | CO-RD-PV-310 SS, ENG-MS-MRK-A-10, PRO-R25-RD-DL-150, ENG-SH-MRK-A-110, PRO-RD-1DL-170, CO-RD-PV-300, CON-RD-MR-290, CO-RD-F-RM-240 SS |  |  |  | -75d | 10d | Skilled Labor [48 h]; Road Painter [48 h]; Retroreflective Thermoplastic White Traffic lines [548.6]; Retroreflective Thermoplastic Yellow, Traffic lines [826.19]; Precast Concrete Blister Warning Tactile Paver Brown Finish 300*300*60mm [13.79] | 40,317.69 |  | RD |
| CO-RD-F-TS-190 |  | Installation Works of Traffic Signs Boards For Road Works for External Road - 3 | 3d | 2027-05-24 | 2027-05-26 | CO-RD-F-RM-250 SS, ENG-MS-TSB-A-10, PRO-R25-RD-DL-140, ENG-SH-TSB-A-100, PRO-RD-1DL-160, CO-RD-F-TS-180 |  |  |  | -83d | 1d | Unskilled Labor [48 h]; Traffic signs, ground mounted, Sheet Aluminum, (breakaway) Single post IPE, with all accessories [34.33] | 21,775.25 |  | RD |
|  | GEN | **Superstructure Work** |  | 2026-08-01 | 2027-06-24 |  |  |  |  |  |  |  |  |  |  |
|  | 4 | **Utility Buildings** |  | 2026-08-29 | 2027-06-24 |  |  |  |  |  |  |  |  |  |  |
|  | 4 | **Water Pump Station** |  | 2026-09-15 | 2027-06-24 |  |  |  |  |  |  |  |  |  |  |
|  | 1 | **Civil work** |  | 2026-09-15 | 2026-12-01 |  |  |  |  |  |  |  |  |  |  |
|  | 1 | **SubStructure** |  | 2026-09-15 | 2026-11-21 |  |  |  |  |  |  |  |  |  |  |
| CO-UB-PS-100 |  | Excavation Work for Water Pump station building | 8d | 2026-09-15 A | 2026-09-17 A | ENG-SH-LS-A-170, PRO-LS-CV-1DL-40, PRO-LS-CV-DL-50 | 100% | 2026-09-24 | 2026-10-03 |  |  | Skilled Labor [80 h]; Unskilled Labor [80 h]; Excavator [80 h]; Foundation [3.91] | 3,720.71 | 3,720.71 | UB |
| CO-UB-PS-110 |  | pouring P.C Conceret for Water Pump station building | 2d | 2026-09-19 A | 2026-09-20 A | CO-UB-PS-100 | 100% | 2026-10-04 | 2026-10-05 |  |  | Skilled Labor [40 h]; Carpenter [80 h]; Carpenter Helper [40 h]; 100 mm thickness lean concrete under the foundation [27.25]; Grade Beams [183.88]; Slab on grade [119.4] | 296,131.68 | 296,131.68 | UB |
| CO-UB-PS-120 |  | Formwork for Foundation for Water Pump station building | 7d | 2026-09-26 A | 2026-09-27 A | CO-UB-PS-110 | 100% | 2026-10-06 | 2026-10-13 |  |  | Skilled Labor [56 h]; Carpenter [112 h]; Carpenter Helper [112 h]; Foundation [3.91] | 3,720.71 | 3,720.71 | UB |
| CO-UB-PS-130 |  | Steel fixing for Foundation for Water Pump station building | 6d | 2026-09-27 A | 2026-09-28 A | CO-UB-PS-120 | 100% | 2026-10-14 | 2026-10-20 |  |  | Skilled Labor [40 h]; Steel fixer [80 h]; Steel Fixer Helper [80 h]; Foundation [3.91] | 3,720.71 | 3,720.71 | UB |
| CO-UB-PS-140 |  | pouring for Foundation for Water Pump station building | 1d | 2026-10-01 A | 2026-10-03 A | CO-UB-PS-130 | 100% | 2026-10-28 | 2026-10-28 |  |  | Skilled Labor [8 h]; Mason [8 h]; Carpenter [16 h]; Foundation [3.91] | 3,720.71 | 3,720.71 | UB |
| CO-UB-PS-150 |  | curing and deshuttering formwork Pump station building | 7d | 2026-10-06 A | 2026-10-10 A | CO-UB-PS-140 | 100% | 2026-10-29 | 2026-11-05 |  |  | Skilled Labor [24 h]; Carpenter [24 h]; Carpenter Helper [24 h]; Foundation [3.91] | 3,720.71 | 3,720.71 | UB |
| CO-UB-PS-160 |  | Backfilling and compaction work for pump station | 4d | 2026-11-17 | 2026-11-21 | CO-UB-PS-150 |  |  |  | -53d | 0d | Skilled Labor [40 h]; Water Tanker [40 h]; Loader [40 h]; Foundation [3.91] | 3,720.71 |  | UB |
|  | 2 | **Super structure** |  | 2026-10-06 | 2026-12-01 |  |  |  |  |  |  |  |  |  |  |
| CO-UB-PS-170 |  | Formwork for Wall and columns for Water Pump station building | 5d | 2026-10-06 A | 2026-10-08 A | CO-UB-PS-160 | 100% | 2026-11-11 | 2026-11-16 |  |  | Skilled Labor [96 h]; Carpenter [192 h]; Carpenter Helper [192 h]; Columns [10.99] | 10,452.08 | 10,452.08 | UB |
| CO-UB-PS-180 |  | Steel fixing for Wall columns | 4d | 2026-10-08 A | 2026-10-10 A | CO-UB-PS-170 | 100% | 2026-11-17 | 2026-11-21 |  |  | Skilled Labor [56 h]; Steel fixer [112 h]; Steel Fixer Helper [112 h]; Columns [10.99] | 10,452.08 | 10,452.08 | UB |
| CO-UB-PS-190 |  | pouring for Wall columns | 1d | 2026-10-11 A | 2026-10-12 A | CO-UB-PS-180 | 100% | 2026-11-22 | 2026-11-22 |  |  | Skilled Labor [8 h]; Mason [8 h]; Carpenter [16 h]; Columns [10.99] | 10,452.08 | 10,452.08 | UB |
| CO-UB-PS-200 |  | curing and deshuttering formwork for Wall columns | 7d | 2026-11-02 A | 2026-11-03 A | CO-UB-PS-190 | 100% | 2026-11-22 | 2026-11-29 |  |  | Skilled Labor [16 h]; Carpenter [16 h]; Carpenter Helper [16 h]; Columns [10.99] | 10,452.08 | 10,452.08 | UB |
| CO-UB-PS-210 |  | Waterproofing for Walls columns | 2d | 2026-11-02 A | 2026-11-04 A | CO-UB-PS-200 | 100% | 2026-11-30 | 2026-12-01 |  |  | Skilled Labor [38 h]; Unskilled Labor [38 h]; Columns [10.99] | 10,452.08 | 10,452.08 | UB |
| CO-UB-PS-220 |  | Formwork for pump roof | 4d | 2026-11-04 A | 2026-11-07 A | CO-UB-PS-210 | 100% | 2026-12-02 | 2026-12-06 |  |  | Skilled Labor [96 h]; Carpenter [192 h]; Carpenter Helper [192 h]; Beams [7.61]; Slabs [10.45] | 17,183.45 | 17,183.45 | UB |
| CO-UB-PS-230 |  | Steel fixing for pump roof | 4d | 2026-11-07 A | 2026-11-09 A | CO-UB-PS-220 | 100% | 2026-12-07 | 2026-12-10 |  |  | Skilled Labor [80 h]; Steel fixer [160 h]; Steel Fixer Helper [160 h]; Beams [7.61]; Slabs [10.45] | 17,183.45 | 17,183.45 | UB |
| CO-UB-PS-240 |  | pouring for pump roof | 2d | 2026-11-22 | 2026-11-23 | CO-UB-PS-230 |  |  |  | -53d | 0d | Skilled Labor [8 h]; Mason [8 h]; Carpenter [16 h]; Beams [7.61]; Slabs [10.45] | 17,183.45 |  | UB |
| CO-UB-PS-250 |  | curing and deshuttering formwork for pump roof | 7d | 2026-11-24 | 2026-12-01 | CO-UB-PS-240 |  |  |  | -53d | 0d | Skilled Labor [16 h]; Carpenter [16 h]; Carpenter Helper [16 h]; Beams [7.61]; Slabs [10.45]; Lightweight Concrete Roof insulation as per Architect's specification [157.16] | 22,811.74 |  | UB |

| ID | WBS | Activity | Duration | Start | Finish | Predecessors | Complete | Remaining | Planned start | Planned finish | Total float | Free float | Resources | Cost | Actual cost | 01- Network |
| --- | --- | --- | --- | --- | --- | --- | --- | --- | --- | --- | --- | --- | --- | --- | --- | --- |
|  | 2 | **Architectural work** |  | 2026-12-02 | 2027-01-05 |  |  |  |  |  |  |  |  |  |  |  |
| CO-UB-PS-260 |  | Executing Masonry Works for Water Pump station building | 7d | 2026-12-02 | 2026-12-09 | CO-UB-PS-250 |  |  |  |  | -53d | 0d | Skilled Labor [96 h]; Mason [96 h]; Hollow Concrete masonry unit, 150 mm thick wall for internal block [174.85]; Insulated brickwork. with expanded polystyrene 200mm thick for External block [170.27]; Hollow Concrete masonry unit, 300 mm thick wall for External block [161.45] | 44,161.26 |  | UB |
| CO-UB-PS-270 |  | Executing Plastering Works for Pump station building | 7d | 2026-12-10 | 2026-12-17 | CO-UB-PS-260 |  |  |  |  | -53d | 0d | Unskilled Labor [160 h]; Plasterer [160 h]; Plasterer Helper [160 h]; 2 perpendicular layers of cold bitumen coats [239.93]; 2 layer of 4mm HDPE membrane, 2 perpendicular layers cold bitumen coats [43.66]; 1 layer EPOXY Paint 300 micron [43.66]; Membrane fully bonded to prime deck and upstand [43.66]; Geotextile Filter membrane uv resistance [43.66]; 85mm thick thermal insulation [43.66]; 1.5mm thick epdm waterproofing membrane [43.66]; Supply and install External plastering to walls and columns min. 15mm thick with cement mortar of specified grade including galvanized mesh, corner beads, angle beads, CE bonds to rough and smooth plaster complete the work as per drawing & specification. [723.97]; Supply and install internal plastering to walls and columns min. 15mm thick with cement mortar of specified grade including galvanized mesh, corner beads, angle beads, CE bonds to rough and smooth plaster complete the work as per drawing & specification. [677.16] | 43,050.86 |  | UB |
| CO-UB-PS-280 |  | Executing Painting and Finishes Works for Pump station building | 8d | 2026-12-19 | 2026-12-27 | CO-UB-PS-270 |  |  |  |  | -53d | 0d | Painter [672 h]; Painter Helper [672 h]; Supply and install 2 coats of weatherproof paint at walls including one prime coat and two coats and putty to give smooth Surface as a base for paint including fiberglass tape to joints and all other accessories as per manufacturers approved specification [723.97]; Supply and install 2 coats of epoxy paint at walls including one prime coat and two coats and putty to give smooth Surface as a base for paint including fiberglass tape to joints and all other accessories as per manufacturers approved specification [649.55]; Supply and install 300*300mm glazed ceramic wall tiles on cement mortar and including rough and smooth plaster, galvanized mesh, corner beads, angle beads, CE bonds [19.33]; Acid Proof Tiles [13.03]; Supply and install 600*600mm porcelain tiles with approved quality on 30 mm mortar including sand fill material as approved by the Client [68.24]; Supply and install 12.5mm thk, gypsum board suspended ceiling including suspension system, paints as required specification and material as approved by the Client including frames supports, access openings and all other accessories to complete as shown in [100.3]; acoustical tiles suspended ceiling 600x600mm concealed metal [13.43]; acoustical tiles suspended ceiling 600x600mm concealed metal | 55,593.03 |  | UB |
| CO-UB-PS-320 |  | Doors and windows Fixing &Stair Tiles | 8d | 2026-12-28 | 2027-01-05 | CO-UB-PS-280 |  |  |  |  | -53d | 0d | Unskilled Labor [56 h]; Carpenter [56 h]; D1 - 1100 mm width x 2200 mm height [1.49]; D4 - 1800 mm width x 3000 mm height [1.49] | 10,180.41 |  | UB |
|  | 3 | **Electrical work** |  |  |  |  |  |  |  |  |  |  |  |  |  |  |
|  | 4 | **Mechanical work** |  | 2027-01-14 | 2027-06-24 |  |  |  |  |  |  |  |  |  |  |  |
| CO-UB-PS-340 |  | Executing HVAC System for Water Pump station building | 10d | 2027-01-14 | 2027-01-25 | CO-UB-PS-320, CO-UB-PS-280, PRO-SPS-LL-MSI-10, CO-UB-PS-270, PRO-LS-LL-MSI-20 |  |  |  |  | -12d | 95d | Unskilled Labor [112 h]; Electrician [112 h]; Plumber [112 h]; Actual capacity 1.5 Ton [2.99]; Actual capacity 2.0 Ton [1.49]; Air Flow 280 l/s @ 150 pa [1.49]; Air Flow 3200 l/s @ 100 pa [1.49]; Air Flow 110 l/s @ 50 pa [1.49]; Air Flow 70 l/s @ 50 pa [1.49]; Air Flow 35 l/s @ 35 pa [1.49]; Air Flow 105 l/s @ 50 pa [1.49]; Air Flow 180 l/s @ 0.01 pa [1.49]; Galvanized sheet metal ducts [128.06]; Supply Liner Slot diffuser 3 slots 1 inch [4.48]; Return Liner Slot diffuser 3 slots 1 inch [4.48]; Exhaust Grill 150mm x 150mm [2.99]; Sand trap louver 2400mm x 1000mm [2.99]; Sound attenuator size 1050 x 650 x 1000 m [1.49] | 88,142.04 |  | UB |
| CO-UB-PS-360 |  | Executing Fire fighting institution works(piping and wire installation) for Water Pump station building | 10d | 2027-05-26 | 2027-06-06 | MS-MO-20, CO-UB-PS-270, CO-UB-PS-270 FF, CO-UB-PS-340, CO-UB-PS-340 FF, PRO-LS-LL-MSI-20 FF, CO-UB-PS-320, CO-UB-PS-320 FF, CO-UB-PS-280, CO-UB-PS-280 FF, PRO-LS-LL-MSI-20 |  |  |  |  | -107d | 0d | Skilled Labor [72 h]; Electrician [72 h]; 4.5 KG CO2 Type Fire Extinguishers [2.99]; 6 KG ABC Type Fire Extinguishers [4.48]; 15 mm dia. [3.4]; 25 mm dia. [2.84]; 32 mm dia. [1.13]; 40 mm dia. [1.13]; 80 mm dia. [4.54]; 200 mm dia. [3.4]; 250 mm dia. [2.27] | 19,868.95 |  | UB |
| CO-UB-PS-380 |  | Executing Plummbing works for Water Pump station building | 10d | 2027-06-07 | 2027-06-17 | MS-MO-20, CO-UB-PS-360, CO-UB-PS-320, CO-UB-PS-360 FF, PRO-LS-LL-MSI-20 |  |  |  |  | -107d | 0d | Skilled Labor [72 h]; Plumber [72 h]; 20 mm [22.39]; 25 mm [4.48]; 32 mm [4.48]; 40 mm [1.49]; 50 mm [2.99]; 100 mm [8.96]; 150 mm [7.46]; 200 mm [4.48]; 250 mm [2.99]; 100 mm [5.97]; 150 mm [2.99]; 200 mm [2.99]; Altitude control valve assembly, size 200 mm [1.49] | 524,159.96 |  | UB |
| CO-UB-PS-390 |  | Installation of pumps | 6d | 2027-06-19 | 2027-06-24 | MS-MO-20, CO-UB-PS-320, CO-UB-PS-280, CO-UB-PS-380, CO-UB-PS-340, PRO-LS-LL-MSI-20 |  |  |  |  | -107d | 0d | Skilled Labor [112 h]; Plumber [112 h]; Supply, install, connection, testing and commssionigs horizontal bladder type pressure tank with capacity 1500 liter according to manufacturer's detail and specification - PS-PT-1 [1.49]; Supply, install, connection, testing and commssionigs horizontal bladder type pressure tank with capacity 300 liter according to manufacturer's detail and specification - PS-PT-2 [1.49]; Chemical DosingTank (CDT) 6000 liters capacity polytheylene tank With pump assembly. [1.49]; Pump Set for Domestic Supply (BP01 / BP02) [1.49]; Pump Set for Irrigation Supply (IRR01 / IRR02) [1.49]; Pump Set for Drainage System [1.49]; Pump Set for SW Force Main (1W+1S) [1.49]; Pump Set for FF Supply (FP01.FP02) [1.49] | 2,083,226.19 |  | UB |
|  | 3 | **Sewage Lift Station** |  | 2026-08-29 | 2027-01-14 |  |  |  |  |  |  |  |  |  |  |  |
|  | 1 | **Civil work** |  | 2026-08-29 | 2027-01-11 |  |  |  |  |  |  |  |  |  |  |  |
|  | 1 | **Sup Structure** |  | 2026-08-29 | 2026-10-10 |  |  |  |  |  |  |  |  |  |  |  |
| CO-UB-LS-220 |  | Excavation Work for Sewage Lift Station | 9d | 2026-08-29 A | 2026-08-31 A | PRO-SPS-CV-1DL-10, PRO-SPS-CV-DL-10, ENG-SH-SPS-A-160, CO-UB-PS-280 | 100% |  | 2027-01-11 | 2027-01-20 |  |  | Skilled Labor [72 h]; Unskilled Labor [72 h]; Excavator [72 h]; Foundation [36.43] | 34,665.13 | 34,665.13 | UB |
| CO-UB-LS-230 |  | pouring P.C Conceret for Sewage Lift Station | 2d | 2026-09-01 A | 2026-09-02 A | CO-UB-LS-220 | 100% |  | 2027-01-21 | 2027-01-23 |  |  | Skilled Labor [40 h]; Carpenter [80 h]; Carpenter Helper [40 h]; 100 mm thickness lean concrete under the foundation [74.33] | 20,627.16 | 20,627.16 | UB |
| CO-UB-LS-240 |  | Formwork for Foundation for Sewage Lift Station | 12d | 2026-09-03 A | 2026-10-03 A | CO-UB-LS-230 | 100% |  | 2027-01-24 | 2027-02-06 |  |  | Skilled Labor [56 h]; Carpenter [112 h]; Carpenter Helper [112 h]; Foundation [36.43] | 34,665.13 | 34,665.13 | UB |
| CO-UB-LS-250 |  | Steel fixing for Foundation for Sewage Lift Station | 10d | 2026-09-03 A | 2026-10-06 A | CO-UB-LS-240 | 100% |  | 2027-02-07 | 2027-02-17 |  |  | Skilled Labor [64 h]; Steel fixer [128 h]; Steel Fixer Helper [128 h]; Foundation [36.43] | 34,665.13 | 34,665.13 | UB |
| CO-UB-LS-260 |  | pouring for Foundationfor Sewage Lift Station | 2d | 2026-09-03 A | 2026-10-08 A | CO-UB-LS-250 | 100% |  | 2027-02-18 | 2027-02-20 |  |  | Skilled Labor [8 h]; Mason [8 h]; Carpenter [16 h]; Foundation [36.43] | 34,665.13 | 34,665.13 | UB |
| CO-UB-LS-270 |  | curing and deshuttering formwork for Sewage Lift Station | 7d | 2026-09-03 A | 2026-10-10 A | CO-UB-LS-260 | 100% |  | 2027-02-21 | 2027-02-28 |  |  | Skilled Labor [16 h]; Carpenter [16 h]; Carpenter Helper [16 h]; Foundation [36.43] | 34,665.13 | 34,665.13 | UB |
| CO-UB-LS-280 |  | Backfilling and compaction work for Sewage Lift Station | 6d | 2026-09-03 A | 2026-10-10 A | CO-UB-LS-270 | 100% |  | 2027-03-01 | 2027-03-07 |  |  | Skilled Labor [48 h]; Water Tanker [48 h]; Loader [48 h]; Foundation [36.43] | 34,665.13 | 34,665.13 | UB |
|  | 2 | **Super structure** |  | 2026-09-30 | 2027-01-11 |  |  |  |  |  |  |  |  |  |  |  |
| CO-UB-LS-290 |  | Formwork for Wall and columns for Sewage Lift Station | 10d | 2026-09-30 A | 2026-10-04 A | CO-UB-LS-280 | 100% |  | 2026-12-28 | 2027-01-07 |  |  | Skilled Labor [56 h]; Carpenter [112 h]; Carpenter Helper [112 h]; Walls [14.33] | 14,769.31 | 14,769.31 | UB |
| CO-UB-LS-300 |  | Steel fixing for Wall columns | 9d | 2026-10-05 A | 2026-10-06 A | CO-UB-LS-290 | 100% |  | 2027-01-09 | 2027-01-18 |  |  | Skilled Labor [72 h]; Steel fixer [144 h]; Steel Fixer Helper [144 h]; Walls [14.33] | 14,769.31 | 14,769.31 | UB |
| CO-UB-LS-310 |  | pouring for Wall columns | 1d | 2026-10-07 A | 2026-10-08 A | CO-UB-LS-300 | 100% |  | 2027-01-19 | 2027-01-19 |  |  | Skilled Labor [8 h]; Mason [8 h]; Carpenter [16 h]; Walls [14.33] | 14,769.31 | 14,769.31 | UB |
| CO-UB-LS-320 |  | curing and deshuttering formwork for Wall columns | 7d | 2026-10-11 A | 2026-10-12 A | CO-UB-LS-310 | 100% |  | 2027-01-20 | 2027-01-27 |  |  | Skilled Labor [16 h]; Carpenter [16 h]; Carpenter Helper [16 h]; Walls [14.33] | 14,769.31 | 14,769.31 | UB |
| CO-UB-LS-330 |  | Waterproofing for Walls columns | 4d | 2026-10-12 A | 2026-10-13 A | CO-UB-LS-320 | 100% |  | 2027-01-28 | 2027-02-01 |  |  | Skilled Labor [32 h]; Unskilled Labor [32 h]; Walls [14.33] | 14,769.31 | 14,769.31 | UB |
| CO-UB-LS-340 |  | Formwork for pump roof | 6d | 2026-10-13 A | 2026-10-15 A | CO-UB-LS-330 | 100% |  | 2027-02-02 | 2027-02-08 |  |  | Skilled Labor [40 h]; Carpenter [80 h]; Carpenter Helper [80 h]; Beams [1.9]; Slabs [23.51] | 24,170.44 | 24,170.44 | UB |
| CO-UB-LS-350 |  | Steel fixing for pump roof | 6d | 2026-10-17 A | 2026-10-18 A | CO-UB-LS-340 | 100% |  | 2027-02-09 | 2027-02-15 |  |  | Skilled Labor [48 h]; Steel fixer [96 h]; Steel Fixer Helper [96 h]; Beams [1.9]; Slabs [23.51] | 24,170.44 | 24,170.44 | UB |
| CO-UB-LS-360 |  | pouring for pump roof | 1d | 2026-10-18 A | 2026-12-28 | CO-UB-LS-350 | 90% | 1d | 2027-02-16 | 2027-02-16 | 42d | 0d | Skilled Labor [8 h]; Mason [8 h]; Carpenter [16 h]; Beams [1.9]; Slabs [23.51] | 24,170.44 |  | UB |
| CO-UB-LS-370 |  | curing and deshuttering formwork for pump roof | 12d | 2026-12-29 | 2027-01-11 | CO-UB-LS-360 |  |  |  |  | 42d | 0d | Skilled Labor [24 h]; Carpenter [24 h]; Carpenter Helper [24 h]; Beams [1.9]; Slabs [23.51]; Lightweight Concrete Roof insulation as per Architect's specification [480.22] | 41,367.98 |  | UB |

| ID | WBS | Activity | Duration | Start | Finish | Predecessors | Total float | Free float | Resources | Cost | 01- Network |
| --- | --- | --- | --- | --- | --- | --- | --- | --- | --- | --- | --- |
|  | 2 | **Architectural work** |  | 2027-01-12 | 2027-01-14 |  |  |  |  |  |  |
| CO-UB-LS-390 |  | Executing Plastering and Finishes Works for Sewage Lift Station | 3d | 2027-01-12 | 2027-01-14 | CO-UB-LS-370 | 42d | 130d | Unskilled Labor [368 h]; Plasterer [368 h]; Plasterer Helper [368 h]; 2 perpendicular layers of cold bitumen coats [1487.54]; 2 layer of 4mm HDPE membrane, 2 perpendicular layers cold bitumen coats [262.82]; 1 layer EPOXY Paint 300 micron [262.82]; Membrane fully bonded to prime deck and upstand [262.82]; Geotextile Filter membrane uv resistance [262.82]; 85mm thick thermal insulation [262.82]; 1.5mm thick epdm waterproofing membrane [262.82]; Supply and install External plastering to walls and columns min. 15mm thick with cement mortar of specified grade including galvanized mesh, corner beads, angle beads, CE bonds to rough and smooth plaster complete the work as per drawing & specification. [1663.07]; Supply and install 2 coats of weatherproof paint at walls including one prime coat and two coats and putty to give smooth Surface as a base for paint including fiberglass tape to joints and all other accessories as per manufacturers approved specification [1663.07]; Supply and install internal plastering to walls and columns min. 15mm thick with cement mortar of specified grade including galvanized mesh, corner beads, angle beads, CE bonds to rough and smooth plaster complete the work as per drawing & specification.; Supply and install 300*300mm glazed ceramic wall tiles on cement mortar and including rough and smooth plaster, galvanized mesh, corner beads, angle beads, CE bonds | 148,139.24 | UB |
|  | 3 | **Electrical work** |  |  |  |  |  |  |  |  |  |
|  | 4 | **Mechanical work** |  |  |  |  |  |  |  |  |  |
|  | 5 | **Potable Water Tank** |  | 2026-12-19 | 2027-03-21 |  |  |  |  |  |  |
|  | 1 | **Eearth Work** |  | 2026-12-19 | 2027-01-12 |  |  |  |  |  |  |
| CO-UB-PWT-100 |  | Excavation work for tank foundation tank formation level for Potable Water Tank | 12d | 2026-12-19 | 2026-12-31 | ENG-SH-ST-A-180, PRO-TSE-CV-1DL-50, PRO-TSE-CV-DL-60, CO-UB-PS-270 | -27d | 0d | Skilled Labor [56 h]; Unskilled Labor [56 h]; Excavator [56 h]; Foundation [52.3] | 49,761 | UB |
| CO-UB-PWT-110 |  | Soil replacement Up to tank formation level for Potable Water Tank | 10d | 2027-01-02 | 2027-01-12 | CO-UB-PWT-100 | -27d | 0d | Skilled Labor [40 h]; Unskilled Labor [40 h]; Excavator [40 h]; Foundation [52.3] | 49,761 | UB |
|  | 2 | **Structural Work** |  | 2027-01-13 | 2027-03-01 |  |  |  |  |  |  |
| CO-UB-PWT-120 |  | Plain Concrete works for Potable Water Tank | 7d | 2027-01-13 | 2027-01-20 | CO-UB-PWT-110 | -27d | 0d | Skilled Labor [24 h]; Carpenter [48 h]; Carpenter Helper [24 h]; 100 mm thickness lean concrete under the foundation [68.13] | 18,908.23 | UB |
| CO-UB-PWT-130 |  | Form work for Tank Foundation for Potable Water Tank | 12d | 2027-01-21 | 2027-02-03 | CO-UB-PWT-120, CO-UB-PS-320 | -27d | 0d | Skilled Labor [48 h]; Carpenter [48 h]; Foundation [52.3] | 49,761 | UB |
| CO-UB-PWT-140 |  | Steel Reinforcement work for Tank Foundation for Potable Water Tank | 12d | 2027-02-04 | 2027-02-17 | CO-UB-PWT-130 | -27d | 0d | Skilled Labor [56 h]; Steel fixer [112 h]; Steel Fixer Helper [112 h]; Foundation [52.3] | 49,761 | UB |
| CO-UB-PWT-150 |  | Casting concrete for Tank Foundation for Potable Water Tank | 10d | 2027-02-18 | 2027-03-01 | CO-UB-PWT-140 | -27d | 0d | Skilled Labor [32 h]; Carpenter [64 h]; Carpenter Helper [32 h]; Foundation [52.3] | 49,761 | UB |
|  | 3 | **Tank Shell Erection&Roof Installation** |  | 2027-03-02 | 2027-03-21 |  |  |  |  |  |  |
| CO-UB-PWT-170 |  | shell erection for Potable Water Tank | 14d | 2027-03-02 | 2027-03-21 | CO-UB-PWT-150 | -27d | 82d | Skilled Labor [112 h]; Plumber [112 h]; 2 perpendicular layers of cold bitumen coats [1343.58]; 2 layer of 4mm HDPE membrane, 2 perpendicular layers cold bitumen coats [224.84]; 1 layer EPOXY Paint 300 micron [224.84]; Membrane fully bonded to prime deck and upstand [224.84]; Geotextile Filter membrane uv resistance [224.84]; 85mm thick thermal insulation [224.84]; 1.5mm thick epdm waterproofing membrane [224.84] | 47,258.8 | UB |
|  | 4 | **Mechanical Work&Accessories** |  |  |  |  |  |  |  |  |  |
|  | 2 | **IrrigationTank** |  | 2027-01-02 | 2027-03-20 |  |  |  |  |  |  |
|  | 1 | **Eearth Work** |  | 2027-01-02 | 2027-01-26 |  |  |  |  |  |  |
| CO-UB-IRT-140 |  | Excavation work for tank foundation tank formation level for Irrigation Tank | 12d | 2027-01-02 | 2027-01-14 | CO-UB-PWT-100, ENG-SH-ST-A-180, PRO-TSE-CV-1DL-50, PRO-TSE-CV-DL-60 | -26d | 0d | Skilled Labor [56 h]; Unskilled Labor [56 h]; Excavator [56 h]; Foundation [52.3] | 49,761 | UB |
| CO-UB-IRT-150 |  | Soil replacement Up to tank formation level for Irrigation Tank | 10d | 2027-01-16 | 2027-01-26 | CO-UB-IRT-140 | -26d | 0d | Skilled Labor [40 h]; Unskilled Labor [40 h]; Excavator [40 h]; Foundation [52.3] | 49,761 | UB |
|  | 2 | **Structural Work** |  | 2027-01-27 | 2027-02-28 |  |  |  |  |  |  |
| CO-UB-IRT-160 |  | Plain Concrete works for Irrigation Tank | 3d | 2027-01-27 | 2027-01-30 | CO-UB-IRT-150 | -26d | 0d | Skilled Labor [24 h]; Carpenter [48 h]; Carpenter Helper [24 h]; 100 mm thickness lean concrete under the foundation [68.13] | 18,908.23 | UB |
| CO-UB-IRT-170 |  | Form work for Tank Foundation for Irrigation Tank | 10d | 2027-01-31 | 2027-02-10 | CO-UB-IRT-160 | -26d | 0d | Skilled Labor [48 h]; Carpenter [48 h]; Foundation [52.3] | 49,761 | UB |
| CO-UB-IRT-180 |  | Steel Reinforcement work for Tank Foundation for Irrigation Tank | 11d | 2027-02-11 | 2027-02-23 | CO-UB-IRT-170 | -26d | 0d | Skilled Labor [56 h]; Steel fixer [112 h]; Steel Fixer Helper [112 h]; Foundation [52.3] | 49,761 | UB |
| CO-UB-IRT-190 |  | Casting concrete for Tank Foundation for Irrigation Tank | 4d | 2027-02-24 | 2027-02-28 | CO-UB-IRT-180 | -26d | 0d | Skilled Labor [32 h]; Carpenter [64 h]; Carpenter Helper [32 h]; Foundation [52.3] | 49,761 | UB |

| ID | WBS | Activity | Duration | Start | Finish | Predecessors | Complete | Remaining | Planned start | Planned finish | Total float | Free float | Resources | Cost | Actual cost | 01- Network |
| --- | --- | --- | --- | --- | --- | --- | --- | --- | --- | --- | --- | --- | --- | --- | --- | --- |
|  | 3 | **Tank Shell Erection&Roof Installation** |  | 2027-03-01 | 2027-03-20 |  |  |  |  |  |  |  |  |  |  |  |
| CO-UB-IRT-210 |  | shell erection for Irrigation Tank | 14d | 2027-03-01 | 2027-03-20 | CO-UB-IRT-190 |  |  |  |  | -26d | 83d | Skilled Labor [112 h]; Plumber [112 h]; 2 perpendicular layers of cold bitumen coats [1343.58]; 2 layer of 4mm HDPE membrane, 2 perpendicular layers cold bitumen coats [224.84]; 1 layer EPOXY Paint 300 micron [224.84]; Membrane fully bonded to prime deck and upstand [224.84]; Geotextile Filter membrane uv resistance [224.84]; 85mm thick thermal insulation [224.84]; 1.5mm thick epdm waterproofing membrane [224.84] | 47,258.8 |  | UB |
|  | 4 | **Mechanical Work&Accessories** |  |  |  |  |  |  |  |  |  |  |  |  |  |  |
|  | 1 | **Control Room** |  | 2026-10-03 | 2027-04-29 |  |  |  |  |  |  |  |  |  |  |  |
|  | 5 | **Civil Work** |  | 2026-10-03 | 2027-01-04 |  |  |  |  |  |  |  |  |  |  |  |
| CO-UB-CR-100 |  | Excavation Work For Control Room Foundation | 7d | 2026-10-03 A | 2026-10-04 A | ENG-SH-ST-A-190, PRO-TSE-CV-DL-70, PRO-TSE-CV-1DL-60 | 100% |  | 2026-12-13 | 2026-12-20 |  |  | Skilled Labor [56 h]; Unskilled Labor [56 h]; Excavator [56 h]; Foundation [7.81] | 7,427.23 | 7,427.23 | UB |
| CO-UB-CR-110 |  | Pouring for Plain Concrete | 5d | 2026-10-05 A | 2026-10-11 A | CO-UB-CR-100 | 100% |  | 2026-12-21 | 2026-12-26 |  |  | Skilled Labor [40 h]; Carpenter [80 h]; Carpenter Helper [40 h]; 100 mm thickness lean concrete under the foundation [9.91]; Grade Beams [275.82] | 265,188.46 | 265,188.46 | UB |
| CO-UB-CR-120 |  | Pouring R.C Footing For Control Room | 21d | 2026-10-13 A | 2026-10-17 A | CO-UB-CR-110 | 100% |  | 2026-12-13 | 2027-01-05 |  |  | Skilled Labor [168 h]; Mason [168 h]; Carpenter [336 h]; Foundation [7.81] | 7,427.23 | 7,427.23 | UB |
| CO-UB-CR-130 |  | Pouring R.C Columns For Control Room | 12d | 2026-10-19 A | 2026-10-24 A | CO-UB-CR-120 | 100% |  | 2026-12-27 | 2027-01-09 |  |  | Skilled Labor [96 h]; Mason [96 h]; Carpenter [192 h]; Columns [82.39] | 78,390.62 | 78,390.62 | UB |
| CO-UB-CR-140 |  | Pouring Beams and Slab For Control Room | 10d | 2026-10-25 A | 2027-01-04 | CO-UB-CR-130 | 5% | 10d | 2027-01-10 | 2027-01-20 | -52d | 1d | Skilled Labor [80 h]; Mason [80 h]; Carpenter [160 h]; Beams [38.06]; Slabs [73.13]; Lightweight Concrete Roof insulation as per Architect's specification [235.75] | 114,241.37 | 5,708.88 | UB |
|  | 6 | **Finishing Work** |  | 2027-01-06 | 2027-04-29 |  |  |  |  |  |  |  |  |  |  |  |
|  | 1 | **Architictural work** |  | 2027-01-06 | 2027-02-23 |  |  |  |  |  |  |  |  |  |  |  |
| CO-UB-CR-150 |  | Brick Work For Control Room | 10d | 2027-01-06 | 2027-01-17 | CO-UB-PS-320, CO-UB-CR-140 |  |  |  |  | -53d | 0d | Mason [184 h]; Mason Helper [368 h]; Hollow Concrete masonry unit, 100 mm thick wall for internal block [4.48]; Hollow Concrete masonry unit, 150 mm thick wall for internal block [355]; Insulated brickwork. with expanded polystyrene 200mm thick for External block [378.99]; Hollow Concrete masonry unit, 300 mm thick wall for External block [395.27] | 99,292.36 |  | UB |
| CO-UB-CR-160 |  | Thermal & Moisture Protection Work for Control Room | 7d | 2027-01-18 | 2027-01-25 | CO-UB-CR-150 |  |  |  |  | -53d | 0d | Skilled Labor [56 h]; Unskilled Labor [56 h]; 2 perpendicular layers of cold bitumen coats [383.88]; 2 layer of 4mm HDPE membrane, 2 perpendicular layers cold bitumen coats [117]; 1 layer EPOXY Paint 300 micron [117]; Membrane fully bonded to prime deck and upstand [117]; Geotextile Filter membrane uv resistance [117]; 85mm thick thermal insulation [117]; 1.5mm thick epdm waterproofing membrane [117] | 21,970.96 |  | UB |
| CO-UB-CR-200 |  | Install For Curtian Wall and Windows and Doors | 7d | 2027-01-26 | 2027-02-02 | CO-UB-CR-160 |  |  |  |  | -53d | 0d | Unskilled Labor [80 h]; Carpenter [80 h]; D1 - 1100 mm width x 2200 mm height [1.49]; D2 - 1070 mm width x 2225 mm height [5.97]; D3 - 1200 mm width x 3000 mm height [2.99]; D4 - 1800 mm width x 3000 mm height [1.49]; Roller Shuter - 3000mm width x 4000mm height [1.49]; D1' 1900mm width x 2950mm height [1.49]; D2' 1200mm width x 2150mm height [4.48]; D3' 800mm width x 2050mm height [1.49]; D4' 1700mm width x 2050mm height [1.49]; 1500 mm width x 1200 mm high (W01) [2.99]; 1200 mm width x 1200 mm high (W02) [1.49]; 1000 mm width x 2400 mm high (L1) [7.46] | 91,926.27 |  | UB |
| CO-UB-CR-240 |  | External Finshing Work (Walls and Floor) | 8d | 2027-02-03 | 2027-02-11 | CO-UB-CR-200 |  |  |  |  | -53d | 0d | Painter [480 h]; Painter Helper [480 h]; Tile Setter [480 h]; Supply and install External plastering to walls and columns min. 15mm thick with cement mortar of specified grade including galvanized mesh, corner beads, angle beads, CE bonds to rough and smooth plaster complete the work as per drawing & specification. [1027.9]; Supply and install 2 coats of weatherproof paint at walls including one prime coat and two coats and putty to give smooth Surface as a base for paint including fiberglass tape to joints and all other accessories as per manufacturers approved specification [1027.9]; Supply and install internal plastering to walls and columns min. 15mm thick with cement mortar of specified grade including galvanized mesh, corner beads, angle beads, CE bonds to rough and smooth plaster complete the work as per drawing & specification. [1263.13]; Supply and install 2 coats of epoxy paint at walls including one prime coat and two coats and putty to give smooth Surface as a base for paint including fiberglass tape to joints and all other accessories as per manufacturers approved specification [1211.64] | 127,277.47 |  | UB |
| CO-UB-CR-250 |  | Internal Finshing Work (Walls,Floor and Ceiling) | 10d | 2027-02-13 | 2027-02-23 | CO-UB-CR-240 |  |  |  |  | -53d | 0d | Painter [480 h]; Painter Helper [480 h]; Tile Setter [480 h]; Supply and install 300*300mm glazed ceramic wall tiles on cement mortar and including rough and smooth plaster, galvanized mesh, corner beads, angle beads, CE bonds [35.96]; Acid Proof Tiles [24.3]; Supply and install 600*600mm porcelain tiles with approved quality on 30 mm mortar including sand fill material as approved by the Client [127.28]; Supply and install 12.5mm thk, gypsum board suspended ceiling including suspension system, paints as required specification and material as approved by the Client including frames supports, access openings and all other accessories to complete as shown in [186.27]; acoustical tiles suspended ceiling 600x600mm concealed metal [25.37] | 21,751.4 |  | UB |
|  | 3 | **Mechanical Work** |  | 2027-01-18 | 2027-04-14 |  |  |  |  |  |  |  |  |  |  |  |
|  | 3 | **HVAC System** |  | 2027-01-18 | 2027-04-14 |  |  |  |  |  |  |  |  |  |  |  |
| CO-UB-CR-170 |  | Install of Refrigerant Piping ( fabricated metal ducts with flanges complete with supports, vanes, dampers ) | 21d | 2027-01-18 | 2027-02-10 | CO-UB-CR-150 |  |  |  |  | -52d | 0d | Skilled Labor [32 h]; Mason [32 h]; Actual capacity 1.0 Ton [0.75]; Actual capacity 1.5 Ton [11.94]; Supply and install flexible duct with insulation; size 8 inch dia. [14.93]; Supply and install flexible duct with insulation; size 10 inch dia. [14.93]; Package Unit 57.4 kW "thermal" [0.75]; Variable Air Volume (VAV 01) [0.75]; Variable Air Volume (VAV 02) [0.75]; Variable Air Volume (VAV 03) [0.75]; Variable Air Volume (VAV 04) [0.75]; Variable Air Volume (VAV 05) [0.75]; Variable Air Volume (VAV 06) [0.75]; Galvanized sheet metal ducts [149.4]; Supply Liner Slot diffuser 3 slots 1 inch [5.22]; Return Liner Slot diffuser 3 slots 1 inch [5.22]; Exhaust Grill 150mm x 150mm [4.48]; Exhast Air fan 515 l/s @ 150 pa [0.75]; Exhast Air fan 3200 l/s @ 100 pa [0.75]; Sand trap louver 2400mm x 1000mm [2.24]; Sound attenuator size 1050 x 650 x 1000 m [0.75] | 68,569.71 |  | UB |
| CO-UB-CR-260 |  | Install of Mini split actual and Ducted split | 20d | 2027-02-24 | 2027-03-22 | CO-UB-CR-250, CO-UB-CR-170 |  |  |  |  | -46d | 0d | Skilled Labor [56 h]; Electrician [56 h]; Actual capacity 1.0 Ton [0.75]; Actual capacity 1.5 Ton [11.94] | 30,177.63 |  | UB |
| CO-UB-CR-310 |  | Install of Air Grills 150mm x150mm and Air Diffuser 600mm x 600mm | 20d | 2027-03-23 | 2027-04-14 | CO-UB-CR-260, CO-UB-CR-170 |  |  |  |  | -46d | 7d | Skilled Labor [96 h]; Electrician [96 h]; Supply and install flexible duct with insulation; size 8 inch dia. [14.93]; Supply and install flexible duct with insulation; size 10 inch dia. [14.93]; Package Unit 57.4 kW "thermal" [0.75]; Variable Air Volume (VAV 01) [0.75]; Variable Air Volume (VAV 02) [0.75]; Variable Air Volume (VAV 03) [0.75]; Variable Air Volume (VAV 04) [0.75]; Variable Air Volume (VAV 05) [0.75]; Variable Air Volume (VAV 06) [0.75]; Galvanized sheet metal ducts [149.4]; Supply Liner Slot diffuser 3 slots 1 inch [5.22]; Return Liner Slot diffuser 3 slots 1 inch [5.22]; Exhaust Grill 150mm x 150mm [4.48]; Exhast Air fan 515 l/s @ 150 pa [0.75]; Exhast Air fan 3200 l/s @ 100 pa [0.75]; Sand trap louver 2400mm x 1000mm [2.24]; Sound attenuator size 1050 x 650 x 1000 m [0.75] | 38,392.08 |  | UB |
|  | 4 | **Fire Fitting System** |  | 2027-02-11 | 2027-03-02 |  |  |  |  |  |  |  |  |  |  |  |
| CO-UB-CR-180 |  | Installation & Testing of 2 hours Fire rated system for closing the openings between rooms with help of Rock wool | 10d | 2027-02-11 | 2027-02-22 | CO-UB-CR-170 |  |  |  |  | -52d | 1d | Skilled Labor [32 h]; Electrician [32 h]; 4.5 KG CO2 Type Fire Extinguishers [5.97]; 6 KG ABC Type Fire Extinguishers [5.22]; 15 mm dia. [2.78]; 25 mm dia. [2.31]; 32 mm dia. [0.93]; 40 mm dia. [0.93]; 80 mm dia. [3.7]; 200 mm dia. [2.78]; 250 mm dia. [1.85]; Fire suppression system FM200 57 kg fill capacity consists of 2 cylinders, duty + standby, complete with all required mechanical, electrical , and control items to install, test, and operate the system. [1.49]; Fire suppression system NOVEC 1230 134.1 kg fill capacity consists of 2 cylinders, duty + standby, complete with all required mechanical, electrical , and control items to install, test, and operate the system. [1.49]; Fire suppression system NOVEC 1230 29.2 kg fill capacity consists of 2 cylinders, duty + standby, complete with all required mechanical, electrical , and control items to install, test, and operate the system. [1.49]; Fire suppression system NOVEC 1230 53.5 kg fill capacity consists of 2 cylinders, duty + standby, complete with all required mechanical, electrical , and control items to install, test, and operate the system. [1.49]; Fire suppression system NOVEC 1230 82.3 kg fill capacity consists of 2 cylinders, duty + standby, complete with all required mechanical, electrical , and control items to install, test, and operate the system. [1.49]; Fire suppression system NOVEC 1230 42.5 kg fill capacity consists of 2 cylinders, duty + standby, complete with all required mechanical, electrical , and control items to install, test, and operate the system. [1.49] | 405,465.91 |  | UB |
| CO-UB-CR-270 |  | Install Fire Extinguishers | 6d | 2027-02-24 | 2027-03-02 | CO-UB-CR-180, CO-UB-CR-250 |  |  |  |  | -47d | 6d | Skilled Labor [48 h]; Electrician [48 h]; 4.5 KG CO2 Type Fire Extinguishers [5.97]; 6 KG ABC Type Fire Extinguishers [5.22]; 15 mm dia. [2.78]; 25 mm dia. [2.31]; 32 mm dia. [0.93]; 40 mm dia. [0.93]; 80 mm dia. [3.7]; 200 mm dia. [2.78]; 250 mm dia. [1.85] | 29,133.26 |  | UB |

| ID | WBS | Activity | Duration | Start | Finish | Predecessors | Complete | Remaining | Planned start | Planned finish | Total float | Free float | Resources | Cost | Actual cost | 01- Network | 13 BUILDINGS |
| --- | --- | --- | --- | --- | --- | --- | --- | --- | --- | --- | --- | --- | --- | --- | --- | --- | --- |
|  | 1 | **Plumbing System** |  | 2027-02-24 | 2027-03-13 |  |  |  |  |  |  |  |  |  |  |  |  |
| CO-UB-CR-370 |  | Install of Sanitary Wares Including Relevant Pipes and Fittings | 12d | 2027-02-24 | 2027-03-13 | CO-UB-CR-180, CO-UB-CR-250 |  |  |  |  | -53d | 0d | Skilled Labor [96 h]; Plumber [96 h]; Supply and installation of western water closet, flush tank type, heavy duty, one piece SASO certified, approval of client, dimesion not less than 40 cm width, 68 cm length including all other accessories as per drawings and specification [7.46]; Supply and installation of urinal, heavy duty, one piece SASO certified, approval of client, including all other accessories as per drawings and specification [2.99]; Supply and installation of Bib tap with Perenial Hose (BPH) with stainless steel flexible hose and cast brass chromeplated hand including all other accessories to complete as per drawing and specification. [7.46]; Supply, installation, testing and commissioning of Lavatory / wash basin with counter for toilets, built in soap dispenser, mixer, single lever arm including all accessories as per drawings and specification and to the approval of the client [2.99]; Provide and install paper towel dispenser, surface mounted, satin finish stainless steel as per approved sample including accessories. [7.46]; Provide and install mirror as per approved sample including frames, backing and all accessories to complete. [2.99]; Provide and install towel ring, surface mounted, satin finish stainless steel as per approved sample including accessories. [7.46]; Hose Bib [1.49]; Valve Chamber [2.99]; Retarding Chamber [2.99]; Inspection Chamber [1.49]; Neutralization pit 1000x1000mm [2.99]; 25mm diameter [8.96]; 32mm diameter [29.85]; 40mm diameter [4.48]; 50mm diameter [41.79]; 75mm diameter [46.27]; 80mm diameter [29.85]; 100mm diameter [32.84]; 110mm diameter [47.76]; 15mm diameter [2.99]; 20mm diameter [25.37]; 25mm diameter [11.94]; 32mm diameter [16.42]; 40mm diameter [55.22]; 50mm diameter [38.81]; 100mm diameter [17.91]; 150mm diameter [31.34]; 200mm diameter [32.84]; 250mm diameter [17.91]; 13mm diameter [1.49]; 20mm diameter [19.4]; Gully Trap [2.99]; Floor drain 75mm [10.45]; Floor cleanout 110mm [8.96]; Roof drain [5.97]; GRP water tanks capacity of each 1000 liter complete with all fittings, all valves and concrete pad [1.49]; Water Heater 30ltr [2.99] | 760,247.84 |  | UB |  |
|  | 4 | **Electrical Work** |  | 2027-02-24 | 2027-04-22 |  |  |  |  |  |  |  |  |  |  |  |  |
|  | 1 | **LV Power** |  | 2027-02-24 | 2027-04-18 |  |  |  |  |  |  |  |  |  |  |  |  |
| CO-UB-CR-190 |  | Install of Distribution board For Control Room | 10d | 2027-02-24 | 2027-03-07 | CO-UB-CR-170, CO-UB-CR-150, CO-UB-CR-250 |  |  |  |  | -49d | 0d | Skilled Labor [40 h]; Electrician [40 h]; Distribution board (MDB-PR-01) [1.49]; Distribution board (LPDB-PR-01) [1.49]; Distribution board (MDB-CB-01) [1.49]; Distribution board (LPDB-CR-01) [1.49]; CB-UPS-01 panel [1.49] | 87,096.11 |  | UB |  |
| CO-UB-CR-220 |  | Install of Earting Cable for Control Room | 14d | 2027-03-08 | 2027-03-27 | CO-UB-CR-190 |  |  |  |  | -49d | 0d | Skilled Labor [56 h]; Electrician [56 h]; Grounding rod 20mmX3m [11.94]; Grounding rod with Pit 20mmX3m [5.97]; Earthing Bar [10.45]; Cu earth strip 25X4 mm [97.01]; 1.5m Air terminal [5.97]; 4mm2 Cu./FRLSZH Cable [4328.36]; 6mm2 Cu./FRLSZH Cable [238.81]; 10mm2 Cu./FRLSZH Cable [462.69]; 16mm2 Cu./FRLSZH Cable [305.97]; 95mm2 Cu./FRLSZH Cable [52.24]; 120mm2 Cu./FRLSZH Cable [186.57]; 30KVA, 400V, 3PH, 60Hz UPS [1.49] | 190,402.92 |  | UB |  |
| CO-UB-CR-280 |  | Install of Socket outlet and LED Lighting | 19d | 2027-03-28 | 2027-04-18 | CO-UB-CR-190, CO-UB-CR-250, CO-UB-CR-220 |  |  |  |  | -49d | 4d | Skilled Labor [152 h]; Electrician [152 h]; 30W LED linear Pendant lighting [49.25]; 30W LED Emergency linear Pendant lighting [14.93]; 47W LED linear Pendant lighting [19.4]; 47W LED Emergency linear Pendant lighting [10.45]; 13W recess mounted LED down light fitting [26.87]; 13W recess emergency mounted LED down light fitting with 1.5 Hr Battery [8.96]; 10.4W LED Exit light with 1.5 Hr Battery [8.96]; 13A,1? 230V Twin socket outlet with switch [35.82]; 13A,1? 230V Industrial socket outlet with switch [4.48]; 13A, Twin Socket outlet, Weather Proof [7.46]; 400A, 3P Disconnect switch [1.49]; 30A, 2P AC Disconnect Switch [19.4]; 30A, 3P AC Disconnect Switch [22.39]; 60A, 3P AC Disconnect Switch [4.48]; 20A Duplex Receptacle Floor Mounted [8.96]; Single gang Lighting switch [8.96]; Double gang Lighting switch [2.99]; 2way Single gang Lighting switch [19.4]; Cable Tray 300 mm X 100 mm [74.63]; 4CX6 Cu. XLPE FRLSZH Cable [238.81]; 4CX10 Cu. XLPE FRLSZH Cable [89.55]; 4CX16 Cu. XLPE FRLSZH Cable [194.03]; 4CX25 Cu. XLPE FRLSZH Cable [22.39]; 4CX35 Cu. XLPE FRLSZH Cable [29.85]; 4CX185 Cu. XLPE FRLSZH Cable [37.31]; 120mm2 Tinned copper wire [402.99]; Supply, install and connection of a SCADA server cum workstation complete with network rack, network switch, sensors, printer, armoured cables with cable tray & conduits, level transmitter, liquid flow meter, quality sensor (COD,BOD,pH), pressure transmit [11.94] | 597,383.66 |  | UB |  |
|  | 3 | **Fire Detection And Alarm System** |  | 2027-03-14 | 2027-04-22 |  |  |  |  |  |  |  |  |  |  |  |  |
| CO-UB-CR-210 |  | Install of 2C x 1.5 Sqm FR Rated Armored - Cable For Loop Wiring | 4d | 2027-03-14 | 2027-03-17 | CO-UB-CR-170, CO-UB-CR-180, CO-UB-CR-270, CO-UB-CR-370 |  |  |  |  | -53d | 0d | Skilled Labor [80 h]; Electrician [80 h]; Supply, install to site and installation Fire loop cable [746.27]; Transmission Communication cable - Fiber Optics [746.27]; Transmission Communication cable - Ethernet Cable [746.27] | 35,785 |  | UB |  |
| CO-UB-CR-230 |  | Install of Transmission Communication cable - Fiber Optics 12Core | 4d | 2027-03-18 | 2027-03-22 | CO-UB-CR-210 |  |  |  |  | -53d | 0d | Skilled Labor [40 h]; Electrician [40 h]; Supply, install to site and installation of power cable [746.27]; Fire Fighter’s Telephone Centre [1.49]; Fireman’s Telephone Jack [1.49]; Voice Command Center [1.49]; DACT (Auto - Dailer) for 24x7 Civil Defence [1.49] | 17,975.13 |  | UB |  |
| CO-UB-CR-290 |  | Install of power supply system for fire alarm control panel | 4d | 2027-03-23 | 2027-03-27 | CO-UB-CR-230, CO-UB-CR-250 |  |  |  |  | -53d | 0d | Skilled Labor [40 h]; Electrician [40 h]; Single Channel Interface Module [1.49]; Supply, install to site and installation of power supply system for fire alarm control panel [2.99] | 11,245.51 |  | UB |  |
| CO-UB-CR-300 |  | Install of Fire Alarm Control panel | 6d | 2027-03-28 | 2027-04-03 | CO-UB-CR-250 FF, CO-UB-CR-210, CO-UB-CR-230, CO-UB-CR-290 |  |  |  |  | -53d | 0d | Skilled Labor [48 h]; Electrician [48 h]; Fire Alarm Control panel with fire alarm zoning with Mimic panel with fire alarm zoning [2.99] | 16,024.1 |  | UB |  |
| CO-UB-CR-320 |  | Installation of the addressable manual call point with operation safety glass breaking | 3d | 2027-04-04 | 2027-04-06 | CO-UB-CR-300, CO-UB-CR-250 |  |  |  |  | -53d | 0d | Skilled Labor [24 h]; Electrician [24 h]; Supply, install to site and installation of the addressable manual call point with operation safety glass breaking and pushbutton [1.49] | 243.37 |  | UB |  |
| CO-UB-CR-330 |  | Install of the photoelectric heat & smoke detector | 5d | 2027-04-07 | 2027-04-12 | CO-UB-CR-320 |  |  |  |  | -53d | 0d | Skilled Labor [24 h]; Electrician [24 h]; Supply, install to site and installation of the Aspirating Smoke Detector complete with accessories and pipes [1.49]; Supply, install to site and installation of the photoelectric smoke detector with base [1.49]; Supply, install to site and installation of the heat detector with base [1.49]; Supply, install to site and installation of multi criteria sensors with base [10.45]; Supply, install to site and installation of Hydrogen detector [1.49]; Supply, install to site and installation of Duct detector [1.49] | 4,228.87 |  | UB |  |
| CO-UB-CR-340 |  | Install of Sounder With Beacon | 5d | 2027-04-13 | 2027-04-18 | CO-UB-CR-330 |  |  |  |  | -53d | 0d | Skilled Labor [24 h]; Electrician [24 h]; Sounder With Beacon [1.49]; Remote LED Indicator [1.49] | 1,190.12 |  | UB |  |
| CO-UB-CR-350 |  | Install of Addressable Control module | 4d | 2027-04-19 | 2027-04-22 | CO-UB-CR-340 |  |  |  |  | -53d | 0d | Skilled Labor [32 h]; Electrician [32 h]; Addressable Control module for Sounders [1.49]; Addressable relay module for interface [1.49]; Addressable monitor module for interface [14.93] | 4,131.48 |  | UB |  |
|  | 2 | **Furnitures work** |  | 2027-04-24 | 2027-04-29 |  |  |  |  |  |  |  |  |  |  |  |  |
| CO-UB-CR-360 |  | Office Chairs,Tables and Stand | 6d | 2027-04-24 | 2027-04-29 | CO-UB-CR-350, CO-UB-CR-280, CO-UB-CR-270, CO-UB-CR-310, CO-UB-CR-370 |  |  |  |  | -53d | 58d | Unskilled Labor [160 h]; Carpenter [160 h]; Supply and install steel ladder with cage at pump room for as per drawings and specification. [11.94]; Overhead Travelling Crane; lifting capacity 1.50 ton manual type all to manufacturer's detail and specifications. - PS-OC-1 [2.99]; Hot dipped Galvanized steel Trench Grating [19.4]; Hot dipped Galvanized steel Channel Cover Plate [32.84]; Steel Frame and Cover 1200 x 1200 [11.94]; Vent Cowl (Standard Size) [298.51]; Steel Handrail of 1.2m height [179.1] | 443,507.28 |  | FU |  |
|  | ML | **Softscape and Planting Works** |  | 2027-04-29 | 2027-06-14 |  |  |  |  |  |  |  |  |  |  |  |  |
| CO-LS-PL-160 |  | Planting Works: Planting including plants, forming planting beds, suitable soil, supports, and protection | 15d | 2027-04-29 | 2027-05-22 | PRO-R25-IR-DL-140, ENG-MS-HS-A-10, ENG-SH-HS-A-110, PRO-IR-1DL-140, CO-RD-PV-180 SS |  |  |  |  | -95d | 0d | Skilled Labor [1152 h]; Unskilled Labor [1152 h]; Planting Labor [1152 h]; Neem Tree, T01 Tree [255.22]; Cassia Glauca Tree, T02 Tree [331.34]; Ponciana Tree, T03 Tree [210.45]; Dodonaea Viscosa, S01 Shrubs 400-500mm, 4plant/m2 [2322.39]; Vitex Angus-Cactus, S02 Shrubs 400-500mm, 5plant/m2 [3238.81]; Pennisetum Rubrum , S03 Shrubs 400-500mm, 5plant/m2 [26776.1]; sesuvium portulacastrum green carpet, GC01 Ground Cover [13128.4]; Catharanthus Roseus 150-200mm, GC02 Ground Cover [9002.99] | 2,361,373.12 |  | SOF | LS |
| CO-LS-SF-170 |  | Site Furnishings (Seating Bench,Stone Boulders and Gravel) | 20d | 2027-05-23 | 2027-06-14 | CO-LS-PL-160, PRO-R25-IR-DL-150, ENG-MS-HS-A-10, ENG-SH-HS-A-110, PRO-IR-1DL-150 |  |  |  |  | -95d | 6d | Skilled Labor [1160 h]; Unskilled Labor [1160 h]; Furnishing Labor [1160 h]; Seating Bench [97.01]; Riyadh Stone Boulders 450mm thick [1362.69]; Gravel Mulch 150mm Beige [22104.5]; Gravel Mulch 150mm White [30343.3]; Gravel Ponds Bed - MARL MIX 500-600mm [3637.31]; Trash/ Recycle Bins [97.01] | 1,553,820.12 |  | SOF | LS |
|  | 6 | **Storm Drainage Ponds** |  | 2026-10-01 | 2027-05-25 |  |  |  |  |  |  |  |  |  |  |  |  |
| CO-SD-PO-100-P1 |  | Excavation & Filling Works - PART 1 for Storm Drainage Ponds | 7d | 2026-10-01 A | 2027-03-31 | MS-CS-SL10 FF, ENG-SH-DPO-A-120, ENG-MS-DPO-A-130, ENG-MT-DPO-CV-A-110, PRO-DPO-CV-1DL-10, PRO-DPO-CV-DL-10, MS-CS-SL10 SS, CO-SD-CB-210, CO-SW-MH-300 | 90% | 7d | 2027-02-21 | 2027-02-28 | -116d | 0d | Skilled Labor [1368 h]; Unskilled Labor [1368 h]; Dozer [1368 h]; Water Tanker [1368 h]; Excavations (including Roads , Plots and Pond) [7313]; Embankments to the Site and Roads (including Roads , Plots and Pond) [124425] | 4,093,462.57 | 3,684,116.31 | SD |  |
| CO-SD-PO-110-P1 |  | Finished Grouted Riprap - PART 1 for Storm Drainage Ponds | 8d | 2027-03-01 A | 2027-04-10 | CO-SD-PO-100-P1 | 90% | 8d | 2027-03-01 | 2027-03-13 | -116d | 0d | Skilled Labor [216 h]; Excavator [216 h]; Finished grouted riprap for Pond 300mm as per drawings [3992.54] | 316,559.5 | 284,936.57 | SD |  |
| CO-SD-PO-100-P2 |  | Excavation & Filling Works - PART 2 for Storm Drainage Ponds | 17d | 2027-04-11 | 2027-04-29 | CO-SD-PO-110-P1, CO-SD-PO-100-P1 |  |  |  |  | -111d | 0d | Skilled Labor [1368 h]; Unskilled Labor [1368 h]; Dozer [1368 h]; Water Tanker [1368 h]; Excavations (including Roads , Plots and Pond) [7313]; Embankments to the Site and Roads (including Roads , Plots and Pond) [124425] | 4,093,462.57 |  | SD |  |
| CO-SD-PO-110-P2 |  | Finished Grouted Riprap - PART 2 for Storm Drainage Ponds | 17d | 2027-05-01 | 2027-05-25 | CO-SD-PO-100-P2, CO-SD-PO-110-P1 |  |  |  |  | -111d | 0d | Skilled Labor [216 h]; Excavator [216 h]; Finished grouted riprap for Pond 300mm as per drawings [3992.54] | 316,559.5 |  | SD |  |

| ID | WBS | Activity | Duration | Start | Finish | Predecessors | Complete | Remaining | Planned start | Planned finish | Total float | Free float | Resources | Cost | 01- Network |
| --- | --- | --- | --- | --- | --- | --- | --- | --- | --- | --- | --- | --- | --- | --- | --- |
|  | 1 | **Boundary Fence and Gaurd Room** |  | 2026-08-01 | 2027-06-20 |  |  |  |  |  |  |  |  |  |  |
|  | 1 | **Gaurd Room Work** |  | 2026-11-02 | 2027-06-20 |  |  |  |  |  |  |  |  |  |  |
|  | 1 | **Civil Work** |  | 2026-11-02 | 2027-05-11 |  |  |  |  |  |  |  |  |  |  |
| A1000 |  | Excavation Work For Guard Room Foundation | 5d | 2026-11-02 A | 2027-04-29 | MS-CS-TSE10 FF, MS-CF-MOB, ENG-SH-GR-A-190, ENG-MS-GR-A-210, PRO-GR-CV-1DL-60, MS-CS-TSE10 SS, CO-RD-PB-140 SS | 66% | 5d | 2027-04-25 | 2027-04-29 | -108d | 0d | Skilled Labor [24 h]; Unskilled Labor [24 h]; Excavator [24 h]; 100 mm thickness lean concrete under the foundation [9.67] | 2,684.02 | FE |
| A1010 |  | Pouring for Plain Concrete for Guard Room | 1d | 2027-05-01 A | 2027-05-01 | A1000, PRO-GR-CV-DL-70 | 30% | 1d |  |  | -108d | 0d | Skilled Labor [8 h]; Carpenter [16 h]; Carpenter Helper [8 h]; 100 mm thickness lean concrete under the foundation [9.67] | 2,684.02 | FE |
| A1020 |  | Pouring R.C Footing for Guard Room | 3d | 2027-05-02 | 2027-05-04 | A1010 |  |  |  |  | -108d | 0d | Skilled Labor [24 h]; Carpenter [24 h]; Steel fixer [24 h]; Foundation [16.96] | 10,082.91 | FE |
| A1030 |  | Pouring R.C Columns for Guard Room | 3d | 2027-05-05 | 2027-05-08 | A1020 |  |  |  |  | -108d | 0d | Skilled Labor [24 h]; Carpenter [24 h]; Steel fixer [24 h]; Columns [3.09] | 3,674.56 | FE |
| A1040 |  | Pouring Beams and Slab for Guard Room | 3d | 2027-05-09 | 2027-05-11 | A1030 |  |  |  |  | -108d | 0d | Skilled Labor [24 h]; Carpenter [24 h]; Steel fixer [24 h]; Slab on Grade [14.93]; Beams [2.15]; Slabs [40.3]; Lightweight Concrete Roof insulation as per Architect's specification [89.55] | 48,433.17 | FE |
|  | 2 | **Finishing Work** |  | 2027-05-12 | 2027-06-20 |  |  |  |  |  |  |  |  |  |  |
|  | 1 | **Architectural work** |  | 2027-05-12 | 2027-06-17 |  |  |  |  |  |  |  |  |  |  |
| A1050 |  | Brick Works for Architectural Works for Guard Rooms | 6d | 2027-05-12 | 2027-05-24 | A1040 |  |  |  |  | -108d | 0d | Mason [48 h]; Mason Helper [96 h]; Insulated brickwork. with expanded polystyrene 200mm thick; vertical straight wall complete with accessories . [153.73]; Common brickwork. 150mm thick; vertical straight wall complete with accessories. [113.43] | 21,590.89 | FE |
| A1060 |  | Thermal & Moisture Protection Work for Architectural Works for Guard Rooms | 5d | 2027-05-25 | 2027-05-30 | A1050 |  |  |  |  | -108d | 0d | Skilled Labor [40 h]; Unskilled Labor [40 h]; Two Layers of Bituminous Coating [1550.33] | 12,890.52 | FE |
| A1080 |  | External Finshing Work (Walls and Floor) for Architectural Works for Guard Rooms | 2d | 2027-06-06 | 2027-06-07 | A1110, A1140, A1220, A1250, A1340, A1200, A1060, A1050 |  |  |  |  | -104d | 0d | Painter [96 h]; Painter Helper [96 h]; Tile Setter [96 h]; Supply and install 50mm thick random cut stone cladding complete with 600mm x 50mm thick coping, necessary framings, slotted anchor connection, steel tube framing, aluminum angles all necessary fittings & accessories as per manufacturer's detail & archite [492.54] | 109,602.9 | FE |
| A1090 |  | Internal Finshing Work (Walls,Floor and Ceiling) for Architectural Works for Guard Rooms | 6d | 2027-06-06 | 2027-06-12 | A1110, A1140, A1220, A1250, A1340, A1200, A1060, A1050 |  |  |  |  | -108d | 0d | Painter [336 h]; Painter Helper [336 h]; Tile Setter [336 h]; Supply and install 300*300mm terrazzo tiles with 150mm high skirting at perimeter with approved quality on 30 mm mortar including sand fill material as approved by the Client (For Roof) [55.22]; Supply and install 300*300mm glazed ceramic wall tiles on cement mortar and including rough and smooth plaster, galvanized mesh, corner beads, angle beads, CE bonds (For Toilets) [111.94]; Supply and install internal plastering and 2 coats of acrylic paint at walls including one coat of primer & two coats of putty to give smooth finish [164.18]; Supply and install 300*300mm glazed ceramic wall tiles on cement mortar and including rough and smooth plaster, galvanized mesh, corner beads, angle beads, CE bonds (For Toilets) [28.36]; Supply and install 600*600mm porcelain tiles with approved quality on 30 mm mortar including sand fill material as approved by the Client (for Security Area) [34.33]; Supply and install 12.5mm thk, gypsum board suspended ceiling including suspension system, paints as required specification and material as approved by the Client including frames supports, access openings and all other accessories to complete as shown in [7.46]; Guard room coping 350mm [47.72]; Guard room coping 450mm [29.33]; Stone coping 500mm [2428.94]; Stone coping 525mm [2491.67] | 721,763.38 | FE |
| A1070 |  | Installation of Windows and Doors for Architectural Works for Guard Rooms | 5d | 2027-06-13 | 2027-06-17 | A1080, A1090 |  |  |  |  | -108d | 0d | Unskilled Labor [40 h]; Carpenter [40 h]; CW01 - 1000 mm width x 2000 mm height [4.48]; CW02 - 2000 mm width x 2000 mm height [8.96]; D2 - 900 mm x 2200 mm height temper door [13.43] | 49,349.22 | FE |
|  | 3 | **Mechanical Work** |  | 2027-05-31 | 2027-06-08 |  |  |  |  |  |  |  |  |  |  |
|  | 1 | **Drainage System** |  | 2027-05-31 | 2027-06-08 |  |  |  |  |  |  |  |  |  |  |
| A1110 |  | Installation of Sewage Piping System complete with joints, angles, reducer etc. for Drainage System for Guard Rooms | 4d | 2027-05-31 | 2027-06-03 | A1050, A1060 |  |  |  |  | -107d | 0d | Skilled Labor [32 h]; Plumber [32 h]; 50mm diameter [52.24]; 75mm diameter [1.49]; 80mm diameter [16.42]; 100mm diameter [5.97]; 110mm diameter [8.96]; Roof drain [4.48]; Vent on a roof to exhaust air [2.99]; 300 X 300 mm Gully trap [4.48]; inspection chamber, size 800x900x1000 [8.96]; 900mm x 800mm Pressure break chamber [1.49]; Floor cleanout, size 75 mm diameter [4.48]; Floor cleanout, size 110 mm diameter [4.48] | 33,221.19 | FE |
| A1120 |  | Installation of all Sanitary Ware for Drainage System for Guard Rooms | 4d | 2027-06-05 | 2027-06-08 | A1110 |  |  |  |  | -100d | 8d | Skilled Labor [32 h]; Plumber [32 h]; Supply and install paper towel dispenser, surface mounted, satin finish stainless steel as per approved sample including accessories. [4.48]; Supply and install Base mounted flush tank water Western water closet system with lid connected to 110mm soil pipe and sanitary tee complete with jointing, angles and bent below floor slab to drainage system [2.99]; Gate Valves [2.99]; Slow Closing Valve [2.99]; 1 meter length 10mm diameter Flexible Hose with insulated handle complete with fork support, index push, vacuum breaker [2.99] | 11,385.82 | FE |
|  | 2 | **Water Supply System** |  | 2027-05-31 | 2027-06-08 |  |  |  |  |  |  |  |  |  |  |
| A1140 |  | Installation of Water Piping System complete with joints, angles, reducer etc. for Water Supply System for Guard Rooms | 3d | 2027-05-31 | 2027-06-02 | A1050, A1060 |  |  |  |  | -106d | 0d | Skilled Labor [24 h]; Plumber [24 h]; 13mm diameter [1.49]; 15mm diameter [2.99]; 20mm diameter [2.99]; 25mm diameter [4.48]; 32mm diameter [25.37]; 20mm diameter [7.46]; 25mm diameter [17.91]; Isolation Valve Size 20 [1.49]; Isolation Valve Size 25 [2.99]; Isolation Valve Size 32 [4.48]; Isolation Valve Size 50 [1.49]; 20 mm diameter spray head for cold water supply [2.99]; Supply and install Electric Water Heater set with connection [1.49]; Water meter complete with accessories. [4.48] | 13,381.4 | FE |
| A1180 |  | Installation oF Water Supply Wares (Water Heater, Faucets, Etc..) for Water Supply System for Guard Rooms | 2d | 2027-06-03 | 2027-06-05 | A1140 |  |  |  |  | -97d | 2d | Skilled Labor [16 h]; Plumber [16 h]; Supply and install Hand Wash Basin with Water Tap, angle valve, P-trap connected to 50mm diameter sanitary pipe fittings chased to wall. [4.48]; Supply and install mirror, size 460*910mm as per approved sample including frames, backing and all accessories to complete. [4.48]; Supply and install towel ring , surface mounted, satin finish stainless steel as per approved sample including accessories. [4.48]; Kitchen sink with single bowl with hot/cold water mixer. [2.99] | 12,899.43 | FE |
| A1240 |  | Installation of water tanks for Water Supply System for Guard Rooms | 1d | 2027-06-08 | 2027-06-08 | A1180, A1080 |  |  |  |  | -98d | 11d | Skilled Labor [8 h]; Plumber [8 h]; GRP water tanks capacity of each 1000 liter complete with all fittings, all valves and concrete pad [4.48] | 24,852.15 | FE |
|  | 3 | **HVAC System** |  | 2027-05-31 | 2027-06-02 |  |  |  |  |  |  |  |  |  |  |
| A1200 |  | Installation of AC Piping for HVAC System for Guard Rooms | 2d | 2027-05-31 | 2027-06-01 | A1050, A1060 |  |  |  |  | -105d | 0d | Unskilled Labor [16 h]; Electrician [16 h]; Plumber [16 h]; Supply, fabricate, install and testing factory fabricated metal ducts with flanges complete with supports, vanes, dampers, links, levers and quadrants etc. as per specifications. It shall include all materials of the duct and supporting arrangement comple [44.78]; Supplying, installation testing & commissioning of external insulation on ducts [59.7]; Supply, fix, testing and commissioning of exhaust air/fresh air louvers of powder coated extruded aluminium construction. [1.49]; Providing, fixing, testing and commissioning of powder coated extruded aluminum sections grills and diffusers with dampers. [2.99] | 7,224.56 | FE |
| A1190 |  | Installation of AC Units for HVAC System for Guard Rooms | 1d | 2027-06-02 | 2027-06-02 | A1200 |  |  |  |  | -95d | 13d | Skilled Labor [8 h]; Electrician [8 h]; Mini split actual capacity 2 Ton [1.49] | 4,142.03 | FE |

| ID | WBS | Activity | Duration | Start | Finish | Predecessors | Complete | Remaining | Planned start | Planned finish | Total float | Free float | Resources | Cost | Actual cost | 01- Network | 12 FENCE |
| --- | --- | --- | --- | --- | --- | --- | --- | --- | --- | --- | --- | --- | --- | --- | --- | --- | --- |
|  | 4 | **Fire Fighting System** |  | 2027-05-31 | 2027-06-02 |  |  |  |  |  |  |  |  |  |  |  |  |
| A1220 |  | Installation & Testing of 2 hours Fire Fighting system for Fire Fighting System for Guard Rooms | 2d | 2027-05-31 | 2027-06-01 | A1060, A1050 |  |  |  |  | -105d | 0d | Skilled Labor [16 h]; Electrician [16 h]; Supply, Installation & Testing of 2 hours Fire rated system for closing the openings between rooms with help of Rock wool, G.I Sheet and Hilti or equivalent Sealants( Qty measured will be the size of opening). Item Properties shall be quoted as per techni [1.49] | 29,585.9 |  | FE |  |
| A1230 |  | Installation of Fire Extinguishers for Fire Fighting System for Guard Rooms | 1d | 2027-06-02 | 2027-06-02 | A1220 |  |  |  |  | -95d | 13d | Skilled Labor [8 h]; Electrician [8 h]; 4.5 KG CO2 Type Fire Extinguishers [4.48]; 6 KG ABC Type Fire Extinguishers [4.48] | 21,301.86 |  | FE |  |
|  | 4 | **Electrical Work** |  | 2027-05-31 | 2027-06-12 |  |  |  |  |  |  |  |  |  |  |  |  |
|  | 1 | **LV Power** |  | 2027-05-31 | 2027-06-09 |  |  |  |  |  |  |  |  |  |  |  |  |
| A1250 |  | Installation of Conduits and Cables for LV System for Gaurd Rooms | 5d | 2027-05-31 | 2027-06-05 | A1050, A1060 |  |  |  |  | -108d | 0d | Unskilled Labor [40 h]; Electrician [40 h]; Junction Box for lighting fixture [286.57]; Trench excavation to receive 2 nos 50mm diameter PVC Conduit, sand bedding and embedded with sand encasement and backfilling with excavated material complete with warning tape at approved depth [183.1]; Earth Pit [8.96]; Grounding rod 20mmX3m [13.43]; Grounding rod with Pit 20mmX3m [8.96]; Earthing Bar [4.48]; 120mm2 Tinned copper wire [223.88]; 4mm2 Cu./FRLSZH Cable [671.64]; 6mm2 Cu./FRLSZH Cable [89.55] | 58,312.64 |  | FE |  |
| A1260 |  | Install of Eletrical Finishes (DBs, Sockets and Lightings) and Termination for LV System for Gaurd Rooms | 4d | 2027-06-06 | 2027-06-09 | A1250 |  |  |  |  | -101d | 7d | Unskilled Labor [32 h]; Electrician [32 h]; Supply, Install, fixings, testing and commissioning 80W LED Projector waterproof DJ effect light including customized project image features complete with mounting system specification to Engineer's approval. [4.48]; Guard Room 1 [1.49]; Guard Room 2 [1.49]; Guard Room 3 [1.49]; 30A, 2P AC Disconnect Switch [13.43]; 20A Duplex Receptacle Floor Mounted [17.91]; Twin Socket outlet [8.96]; Twin Socket outlet, Weather Proof [4.48]; Single gang Lighting switch [8.96]; 36W LED linear Pendant lighting [4.48]; 36W LED Emergency linear Pendant lighting [4.48]; 13W recess mounted LED down light fitting [8.96]; 13W recess emergency mounted LED down light fitting with 1.5 Hr Battery [8.96]; 10.4W LED Exit light with 1.5 Hr Battery [4.48] | 48,707.97 |  | FE |  |
|  | 3 | **Fire Detection And Alarm System** |  | 2027-05-31 | 2027-06-12 |  |  |  |  |  |  |  |  |  |  |  |  |
| A1340 |  | Installation of Conduits and Cables for Fire Alarm System for Gaurd Rooms | 5d | 2027-05-31 | 2027-06-05 | A1060, A1050 |  |  |  |  | -108d | 0d | Unskilled Labor [280 h]; Electrician [280 h]; 2C x 1.5 Sqm FR Rated Armored - Cable For Loop Wiring [2686.57]; Transmission Communication cable - Fiber Optics 12Core [3731.34]; Transmission Communication cable - Ethernet Cable [746.27]; Supply, install to site and installation of power cable [2388.06] | 135,702 |  | FE |  |
| A1350 |  | Installation of Fire Alarm Devices (AMCP, SD,HD, Sounder and Panels) for Fire Alarm System for Gaurd Rooms | 6d | 2027-06-06 | 2027-06-12 | A1340 |  |  |  |  | -103d | 5d | Unskilled Labor [48 h]; Electrician [48 h]; Fire Alarm Control panel with fire alarm zoning with Mimic panel with fire alarm zoning [5.97]; Main Fire Alarm Control panel with fire alarm zoning with Mimic panel with fire alarm zoning [1.49]; Supply and installation of the addressable manual call point with operation safety glass breaking and pushbutton [25.37]; Supply and installation of the photoelectric heat & smoke detector with base [61.19]; Sounder With Beacon [29.85]; Addressable Control module for Sounders [29.85]; Addressable Control module for HVAC System [2.99]; Addressable Monitor module for HVAC System [2.99]; DACT (Auto - Dailer) for 24x7 Civil Defence [1.49]; Supply, install to site and installation of power supply system for fire alarm control panel [1.49]; Fire Fighter’s Telephone Centre [1.49]; Fireman’s Telephone Jack [2.99]; Voice Command Center [1.49] | 92,496.14 |  | FE |  |
|  | 2 | **Security System** |  |  |  |  |  |  |  |  |  |  |  |  |  |  |  |
|  | 2 | **Furniture work** |  | 2027-06-19 | 2027-06-20 |  |  |  |  |  |  |  |  |  |  |  |  |
| A1100 |  | Office Chairs,Tables and Stand | 2d | 2027-06-19 | 2027-06-20 | A1060, A1050, A1230, A1180, A1070, A1120, A1190, A1260, A1350 |  |  |  |  | -108d | 1d | Unskilled Labor [32 h]; Carpenter [16 h]; Office Chairs [5.97]; Office Tables [5.97]; Guard Stand [2.99] | 21,301.84 |  | FE |  |
|  | 3 | **Boundary Fence** |  | 2026-08-01 | 2027-06-03 |  |  |  |  |  |  |  |  |  |  |  |  |
|  | 2 | **Boundary Fence - South** |  | 2026-08-01 | 2027-04-05 |  |  |  |  |  |  |  |  |  |  |  |  |
|  | 1 | **Civil Work** |  | 2026-08-01 | 2027-01-02 |  |  |  |  |  |  |  |  |  |  |  |  |
| CO-SU-FE-N-CI-100 |  | Excavation Work For Boundary Fence South | 16d | 2026-08-01 A | 2026-08-03 A | MS-CS-LV10 FF, ENG-SH-GR-A-200, ENG-MS-GR-A-220, PRO-FE-CV-1DL-70, MS-CS-LV10 SS, CO-EW-240, CO-EW-200, CO-EW-230, CO-EW-220 | 100% |  | 2026-10-24 | 2026-11-10 |  |  | Skilled Labor [56 h]; Unskilled Labor [56 h]; Excavator [56 h]; 100 mm thickness lean concrete under the foundation [239.19] | 66,379.69 | 66,379.69 | FE | NORTH |
| CO-SU-FE-N-CI-110 |  | Pouring for Plain Concrete For Boundary Fence South | 14d | 2026-08-08 A | 2026-08-13 A | CO-SU-FE-N-CI-100, PRO-FE-CV-DL-80 FF | 100% |  | 2026-11-11 | 2026-11-26 |  |  | Skilled Labor [72 h]; Carpenter [144 h]; Carpenter Helper [72 h]; 100 mm thickness lean concrete under the foundation [239.19] | 66,379.69 | 66,379.69 | FE | NORTH |
| CO-SU-FE-N-CI-120 |  | Pouring R.C Footing For Boundary Fence South | 12d | 2026-08-15 A | 2026-08-22 A | CO-SU-FE-N-CI-110 | 100% |  | 2026-11-28 | 2026-12-10 |  |  | Skilled Labor [128 h]; Carpenter [128 h]; Steel fixer [128 h]; Foundation [525.61] | 312,570.17 | 312,570.17 | FE | NORTH |
| CO-SU-FE-N-CI-130 |  | Pouring R.C Columns For Boundary Fence South | 16d | 2026-09-26 A | 2026-12-20 | CO-SU-FE-N-CI-120 | 10% | 0d | 2026-11-09 | 2026-11-26 | -54d | 0d | Skilled Labor [128 h]; Carpenter [128 h]; Steel fixer [128 h]; Walls [332.09]; Columns [109.3] | 472,303.81 | 472,303.81 | FE | NORTH |
| CO-SU-FE-N-CI-140 |  | Pouring Beams For Boundary Fence South | 12d | 2026-12-20 | 2027-01-02 | CO-SU-FE-N-CI-130 |  |  |  |  | -54d | 0d | Skilled Labor [96 h]; Carpenter [96 h]; Steel fixer [96 h]; Beams [106.93] | 118,693.87 |  | FE | NORTH |
|  | 5 | **Finishing Work** |  | 2026-10-13 | 2027-04-05 |  |  |  |  |  |  |  |  |  |  |  |  |
|  | 4 | **Architictural work** |  | 2026-10-13 | 2027-03-08 |  |  |  |  |  |  |  |  |  |  |  |  |
| CO-SU-FE-N-AR-100 |  | Install Brick Work For Boundary Fence South | 19d | 2026-10-13 A | 2027-01-24 | CO-SU-FE-N-CI-140 | 75% | 19d | 2026-12-27 | 2027-01-17 | -54d | 0d | Mason [456 h]; Mason Helper [912 h]; Common brickwork. 300mm thick; vertical straight wall complete with accessories. [2938.43] | 279,956.25 | 209,602.8 | FE | NORTH |
| CO-SU-FE-N-AR-110 |  | Insulation For Boundary Fence South | 15d | 2027-02-09 | 2027-02-25 | CO-SU-FE-N-AR-100, CO-SU-FE-N-EL-240 |  |  |  |  | -54d | 0d | Skilled Labor [256 h]; Unskilled Labor [256 h]; Two Layers of Bituminous Coating [12531.8]; 20x20 Approved Polysulfide Joint Sealant [115.67]; 2 perpendicular layers of cold bitumen coats [22.39]; 2 layer of 4mm HDPE membrane, 2 perpendicular layers cold bitumen coats [22.39]; 1 layer EPOXY Paint 300 micron [22.39]; Membrane fully bonded to prime deck and upstand [22.39]; Geotextile Filter membrane uv resistance [22.39]; 85mm thick thermal insulation [22.39]; 1.5mm thick epdm waterproofing membrane [22.39] | 109,998.78 |  | FE | NORTH |
| CO-SU-FE-N-AR-120 |  | Install all the Relevant Cladding and Finishes For Boundary Fence South | 9d | 2027-02-27 | 2027-03-08 | CO-SU-FE-N-AR-110 |  |  |  |  | -51d | 0d | Skilled Labor [72 h]; Unskilled Labor [72 h]; Supply and install 33mm thick Lexan cladding blue complete with necessary framings & accessories all as per manufacturer's & architectural drawing. [283.58]; Supply and install 50mm thick random cut stone cladding complete with 600mm x 50mm thick coping, necessary framings, slotted anchor connection, steel tube framing, aluminum angles all necessary fittings & accessories as per manufacturer's detail & archite [3981.34]; Supply and install External plastering to walls and columns min. 15mm thick with cement mortar of specified grade including galvanized mesh, corner beads, angle beads, CE bonds to rough and smooth plaster complete the work as per drawing & specification. [4477.61]; Supply and install 2 coats of weatherproof paint at walls including one prime coat and two coats and putty to give smooth Surface as a base for paint including fiberglass tape to joints and all other accessories as per manufacturers approved specification [4477.61]; Supply and install MODON Signage with Logo Type 1 [3.73]; Supply and install MODON Signage Type 2 [3.73]; Supply and install "Triangle Style" signage [11.19] | 1,276,358.1 |  | FE | NORTH |

| ID | WBS | Activity | Duration | Start | Finish | Predecessors | Complete | Remaining | Planned start | Planned finish | Total float | Free float | Resources | Cost | Actual cost | 01- Network | 12 FENCE |
| --- | --- | --- | --- | --- | --- | --- | --- | --- | --- | --- | --- | --- | --- | --- | --- | --- | --- |
|  | 3 | **Electrical Work** |  | 2027-01-25 | 2027-04-05 |  |  |  |  |  |  |  |  |  |  |  |  |
| CO-SU-FE-N-EL-240 |  | Installation of Conduits and Cables for Electricial Works For Boundary Fence South | 13d | 2027-01-25 | 2027-02-08 | CO-SU-FE-N-AR-100 |  |  |  |  | -54d | 0d | Unskilled Labor [104 h]; Electrician [104 h]; Trench excavation to receive 2 nos 50mm diameter PVC Conduit, sand bedding and embedded with sand encasement and backfilling with excavated material complete with warning tape at approved depth [1262.06]; Control cable [1160.45]; CAT6A cable [1160.45]; 800mm depth minimum Trench excavation to receive 3 nos 50mm diameter PVC Conduit with spacer, sand bedding and embedded with sand encasement and backfill with excavated material well compacted complete with warning tape [1307.84]; Hot dipped galvanized cable conduits for CAT6A cable and Control Cables embedded to wall [110.07]; 4C-16mm2 CU/XLPE/PVC direct buried armored cable [479.48]; 4C-10mm2 CU/XLPE/PVC direct buried armored cable [373.13]; 16mm2 CU/PVC wire [373.13]; 10mm2 CU/PVC wire [479.48] | 154,292.08 |  | FE | NORTH |
| CO-SU-FE-N-EL-250 |  | Install, fixings, testing of all electrical finishes and lightings for Electricial Works For Boundary Fence South | 21d | 2027-03-13 | 2027-04-05 | CO-SU-FE-N-EL-240, CO-SU-FE-N-AR-120 |  |  |  |  | -51d | 0d | Unskilled Labor [176 h]; Electrician [176 h]; Magnetic Control Access barrier, Automatic Vehicular Barriers to be installed on ground with magnetic access [2.24]; IR Intrusion Detection System Quad Beams (Tx & Rx) (SL-350 QDM) [8.96]; Field Equipment Cabinet enclosed outdoor complete with precast concrete footing, suitable for parameter security and weather proof to the local enviroment. Not less than IP66 and IK rating. [8.21]; Supply and install 800mm x 800mm x 800mm height concrete handhole with bituminous paint all around, 690mm x 690mm handhold cover and sump cover.; including pit excavation [5.97]; 8 Port Industrial PoE Switch 10/100BaseT (0 deg to +70 deg. Celsius) [8.21]; 06C Optical Fiber SM [934.7]; 48C Optical Fiber SM [2615.67]; 48 Core Splice Closure [2.61]; Boom Barrier at Security Guard Room [2.24]; Pedestrian turnstile at Security Guard Room [2.24]; Access Control Unit [1.12]; Access Card Reader [1.12]; Magnetic Lock [1.12]; Break Glass [1.12]; Exit Push button [1.12]; Door Sensor [1.12]; Biometrics Reader [0.75]; Pole/Bollard mounted IP( PoE), Automatic Number Plate Recognition (ANPR, camera, 5MP,IP 66, IR illumination, 3-8mm varifocal, auto iris lens type price include the Bollard/pole) [2.24]; 12U rack dimension (W x H x L) 600 x 625 x 600 mm [0.37]; 4C-16mm2 CU/XLPE/PVC direct buried armored cable [753.73]; 4C-10mm2 CU/XLPE/PVC direct buried armored cable [608.21]; 16mm2 CU/PVC wire [753.73]; 10mm2 CU/PVC wire [608.21]; 400V, 3PH, 60Hz lighting control panel (LCP-02) [0.37]; 38W, 230V, 1PH, 60Hz fence, led linear uplight lighting, IP66 [50.75] | 486,987.29 |  | FE | NORTH |
|  | 1 | **Boundary Fence - West** |  | 2026-08-01 | 2027-04-15 |  |  |  |  |  |  |  |  |  |  |  |  |
|  | 1 | **Civil Work** |  | 2026-08-01 | 2026-10-18 |  |  |  |  |  |  |  |  |  |  |  |  |
| CO-SU-FE-N-CI-150 |  | Excavation Work For Boundary Fence West | 16d | 2026-08-01 A | 2026-08-04 A | ENG-SH-GR-A-200, ENG-MS-GR-A-220, PRO-FE-CV-1DL-70, MS-CS-LV10 SS, CO-EW-240, CO-EW-200, CO-EW-230, CO-EW-220, CO-EW-210_R, CO-SU-FE-N-CI-100 | 100% |  | 2026-11-11 | 2026-11-29 |  |  | Skilled Labor [144 h]; Unskilled Labor [144 h]; Excavator [144 h]; 100 mm thickness lean concrete under the foundation [239.19] | 66,379.69 | 66,379.69 | FE | NORTH |
| CO-SU-FE-N-CI-160 |  | Pouring for Plain Concrete For Boundary Fence West | 13d | 2026-08-05 A | 2026-08-10 A | CO-SU-FE-N-CI-150, PRO-FE-CV-DL-80 FF, CO-SU-FE-N-CI-110 | 100% |  | 2026-11-30 | 2026-12-14 |  |  | Skilled Labor [104 h]; Carpenter [208 h]; Carpenter Helper [104 h]; 100 mm thickness lean concrete under the foundation [239.19] | 66,379.69 | 66,379.69 | FE | NORTH |
| CO-SU-FE-N-CI-170 |  | Pouring R.C Footing For Boundary Fence West | 16d | 2026-08-11 A | 2026-08-19 A | CO-SU-FE-N-CI-160, CO-SU-FE-N-CI-120 | 100% |  | 2026-12-15 | 2027-01-02 |  |  | Skilled Labor [144 h]; Carpenter [144 h]; Steel fixer [144 h]; Foundation [525.61] | 312,570.17 | 312,570.17 | FE | NORTH |
| CO-SU-FE-N-CI-180 |  | Pouring R.C Columns For Boundary Fence West | 16d | 2026-09-26 A | 2026-10-12 A | CO-SU-FE-N-CI-170, CO-SU-FE-N-CI-130 | 100% |  | 2026-11-28 | 2026-12-15 |  |  | Skilled Labor [144 h]; Carpenter [144 h]; Steel fixer [144 h]; Walls [332.09]; Columns [109.3] | 472,303.81 | 472,303.81 | FE | NORTH |
| CO-SU-FE-N-CI-190 |  | Pouring Beams For Boundary Fence West | 12d | 2026-10-12 A | 2026-10-18 A | CO-SU-FE-N-CI-180, CO-SU-FE-N-CI-140 | 100% |  | 2026-12-27 | 2027-01-09 |  |  | Skilled Labor [88 h]; Carpenter [88 h]; Steel fixer [88 h]; Beams [106.93] | 118,693.87 | 118,693.87 | FE | NORTH |
|  | 5 | **Finishing Work** |  | 2026-10-01 | 2027-04-15 |  |  |  |  |  |  |  |  |  |  |  |  |
|  | 4 | **Architictural work** |  | 2026-10-01 | 2027-03-29 |  |  |  |  |  |  |  |  |  |  |  |  |
| CO-SU-FE-N-AR-130 |  | Install Brick Work For Boundary Fence West | 16d | 2026-10-01 A | 2026-11-08 A | CO-SU-FE-N-CI-190, CO-SU-FE-N-AR-100 | 100% |  | 2027-01-11 | 2027-01-28 |  |  | Mason [512 h]; Mason Helper [1024 h]; Common brickwork. 300mm thick; vertical straight wall complete with accessories. [2938.43] | 279,956.25 | 279,956.25 | FE | NORTH |
| CO-SU-FE-N-AR-140 |  | Insulation For Boundary Fence West | 12d | 2026-10-13 A | 2027-03-15 | CO-SU-FE-N-AR-130, CO-SU-FE-N-EL-260, CO-SU-FE-N-AR-110 | 40% | 12d | 2027-02-20 | 2027-03-04 | -54d | 0d | Skilled Labor [336 h]; Unskilled Labor [336 h]; Two Layers of Bituminous Coating [12531.8]; 20x20 Approved Polysulfide Joint Sealant [115.67]; 2 perpendicular layers of cold bitumen coats [22.39]; 2 layer of 4mm HDPE membrane, 2 perpendicular layers cold bitumen coats [22.39]; 1 layer EPOXY Paint 300 micron [22.39]; Membrane fully bonded to prime deck and upstand [22.39]; Geotextile Filter membrane uv resistance [22.39]; 85mm thick thermal insulation [22.39]; 1.5mm thick epdm waterproofing membrane [22.39] | 109,998.78 | 58,202.9 | FE | NORTH |
| CO-SU-FE-N-AR-150 |  | Install all the Relevant Cladding and Finishes For Boundary Fence West | 12d | 2027-03-16 | 2027-03-29 | CO-SU-FE-N-AR-140, CO-SU-FE-N-AR-120 |  |  |  |  | -54d | 0d | Skilled Labor [76.8 h]; Unskilled Labor [76.8 h]; Supply and install 33mm thick Lexan cladding blue complete with necessary framings & accessories all as per manufacturer's & architectural drawing. [283.58]; Supply and install 50mm thick random cut stone cladding complete with 600mm x 50mm thick coping, necessary framings, slotted anchor connection, steel tube framing, aluminum angles all necessary fittings & accessories as per manufacturer's detail & archite [3981.34]; Supply and install External plastering to walls and columns min. 15mm thick with cement mortar of specified grade including galvanized mesh, corner beads, angle beads, CE bonds to rough and smooth plaster complete the work as per drawing & specification. [4477.61]; Supply and install 2 coats of weatherproof paint at walls including one prime coat and two coats and putty to give smooth Surface as a base for paint including fiberglass tape to joints and all other accessories as per manufacturers approved specification [4477.61]; Supply and install MODON Signage with Logo Type 1 [3.73]; Supply and install MODON Signage Type 2 [3.73]; Supply and install "Triangle Style" signage [11.19] | 1,276,358.1 |  | FE | NORTH |
|  | 3 | **Electrical Work** |  | 2027-02-09 | 2027-04-15 |  |  |  |  |  |  |  |  |  |  |  |  |
| CO-SU-FE-N-EL-260 |  | Installation of Conduits and Cables for Electricial Works For Boundary Fence West | 8d | 2027-02-09 | 2027-02-17 | CO-SU-FE-N-AR-130, CO-SU-FE-N-EL-240 |  |  |  |  | -47d | 0d | Unskilled Labor [96 h]; Electrician [96 h]; Trench excavation to receive 2 nos 50mm diameter PVC Conduit, sand bedding and embedded with sand encasement and backfilling with excavated material complete with warning tape at approved depth [1262.06]; Control cable [1160.45]; CAT6A cable [1160.45]; 800mm depth minimum Trench excavation to receive 3 nos 50mm diameter PVC Conduit with spacer, sand bedding and embedded with sand encasement and backfill with excavated material well compacted complete with warning tape [1307.84]; Hot dipped galvanized cable conduits for CAT6A cable and Control Cables embedded to wall [110.07]; 4C-16mm2 CU/XLPE/PVC direct buried armored cable [479.48]; 4C-10mm2 CU/XLPE/PVC direct buried armored cable [373.13]; 16mm2 CU/PVC wire [373.13]; 10mm2 CU/PVC wire [479.48] | 154,292.08 |  | FE | NORTH |
| CO-SU-FE-N-EL-270 |  | Install, fixings, testing of all electrical finishes and lightings for Electricial Works For Boundary Fence West | 9d | 2027-04-06 | 2027-04-15 | CO-SU-FE-N-EL-260, CO-SU-FE-N-AR-150, CO-SU-FE-N-EL-250 |  |  |  |  | -51d | 0d | Skilled Labor; Unskilled Labor [72 h]; Electrician [72 h]; Magnetic Control Access barrier, Automatic Vehicular Barriers to be installed on ground with magnetic access [2.24]; IR Intrusion Detection System Quad Beams (Tx & Rx) (SL-350 QDM) [8.96]; Field Equipment Cabinet enclosed outdoor complete with precast concrete footing, suitable for parameter security and weather proof to the local enviroment. Not less than IP66 and IK rating. [8.21]; Supply and install 800mm x 800mm x 800mm height concrete handhole with bituminous paint all around, 690mm x 690mm handhold cover and sump cover.; including pit excavation [5.97]; 8 Port Industrial PoE Switch 10/100BaseT (0 deg to +70 deg. Celsius) [8.21]; 06C Optical Fiber SM [934.7]; 48C Optical Fiber SM [2615.67]; 48 Core Splice Closure [2.61]; Boom Barrier at Security Guard Room [2.24]; Pedestrian turnstile at Security Guard Room [2.24]; Access Control Unit [1.12]; Access Card Reader [1.12]; Magnetic Lock [1.12]; Break Glass [1.12]; Exit Push button [1.12]; Door Sensor [1.12]; Biometrics Reader [0.75]; Pole/Bollard mounted IP( PoE), Automatic Number Plate Recognition (ANPR, camera, 5MP,IP 66, IR illumination, 3-8mm varifocal, auto iris lens type price include the Bollard/pole) [2.24]; 12U rack dimension (W x H x L) 600 x 625 x 600 mm [0.37]; 4C-16mm2 CU/XLPE/PVC direct buried armored cable [753.73]; 4C-10mm2 CU/XLPE/PVC direct buried armored cable [608.21]; 16mm2 CU/PVC wire [753.73]; 10mm2 CU/PVC wire [608.21]; 400V, 3PH, 60Hz lighting control panel (LCP-02) [0.37]; 38W, 230V, 1PH, 60Hz fence, led linear uplight lighting, IP66 [50.75] | 486,987.29 |  | FE | NORTH |
|  | 3 | **Boundary Fence - North** |  | 2026-08-01 | 2027-04-12 |  |  |  |  |  |  |  |  |  |  |  |  |
|  | 1 | **Civil Work** |  | 2026-08-01 | 2027-01-16 |  |  |  |  |  |  |  |  |  |  |  |  |
| CO-SU-FE-N-CI-200 |  | Excavation Work For Boundary Fence North | 16d | 2026-08-01 A | 2026-08-04 A | ENG-SH-GR-A-200, ENG-MS-GR-A-220, PRO-FE-CV-1DL-70, MS-CS-LV10 SS, CO-EW-240, CO-EW-200, CO-EW-230, CO-EW-220, CO-EW-210_R, CO-SU-FE-N-CI-150 | 100% |  | 2026-11-30 | 2026-12-17 |  |  | Skilled Labor [96 h]; Unskilled Labor [96 h]; Excavator [96 h]; 100 mm thickness lean concrete under the foundation [239.19] | 66,379.69 | 66,379.69 | FE | NORTH |
| CO-SU-FE-N-CI-210 |  | Pouring for Plain Concrete For Boundary Fence North | 13d | 2026-08-05 A | 2026-08-11 A | CO-SU-FE-N-CI-200, PRO-FE-CV-DL-80 FF, CO-SU-FE-N-CI-160 | 100% |  | 2026-12-19 | 2027-01-02 |  |  | Skilled Labor [72 h]; Carpenter [144 h]; Carpenter Helper [72 h]; 100 mm thickness lean concrete under the foundation [239.19] | 66,379.69 | 66,379.69 | FE | NORTH |
| CO-SU-FE-N-CI-220 |  | Pouring R.C Footing For Boundary Fence North | 16d | 2026-08-11 A | 2026-09-02 A | CO-SU-FE-N-CI-210, CO-SU-FE-N-CI-170 | 100% |  | 2027-01-03 | 2027-01-20 |  |  | Skilled Labor [96 h]; Carpenter [96 h]; Steel fixer [96 h]; Foundation [525.61] | 312,570.17 | 312,570.17 | FE | NORTH |
| CO-SU-FE-N-CI-230 |  | Pouring R.C Columns For Boundary Fence North | 16d | 2026-09-26 A | 2026-10-12 A | CO-SU-FE-N-CI-220, CO-SU-FE-N-CI-180 | 100% |  | 2026-12-16 | 2027-01-03 |  |  | Skilled Labor [96 h]; Carpenter [96 h]; Steel fixer [96 h]; Walls [332.09]; Columns [109.3] | 472,303.81 | 472,303.81 | FE | NORTH |
| CO-SU-FE-N-CI-240 |  | Pouring Beams For Boundary Fence North | 12d | 2027-01-03 | 2027-01-16 | CO-SU-FE-N-CI-230, CO-SU-FE-N-CI-190 |  |  |  |  | -13d | 0d | Skilled Labor [48 h]; Carpenter [48 h]; Steel fixer [48 h]; Beams [106.93] | 118,693.87 |  | FE | NORTH |

| ID | WBS | Activity | Duration | Start | Finish | Predecessors | Complete | Remaining | Planned start | Planned finish | Total float | Free float | Resources | Cost | Actual cost | 01- Network | 12 FENCE |
| --- | --- | --- | --- | --- | --- | --- | --- | --- | --- | --- | --- | --- | --- | --- | --- | --- | --- |
|  | 5 | **Finishing Work** |  | 2026-10-01 | 2027-04-12 |  |  |  |  |  |  |  |  |  |  |  |  |
|  | 4 | **Architictural work** |  | 2026-10-01 | 2027-04-05 |  |  |  |  |  |  |  |  |  |  |  |  |
| CO-SU-FE-N-AR-160 |  | Install Brick Work For Boundary Fence North | 14d | 2026-10-01 A | 2026-11-08 A | CO-SU-FE-N-CI-240, CO-SU-FE-N-AR-130 | 100% |  | 2027-01-30 | 2027-02-14 |  |  | Mason [456 h]; Mason Helper [912 h]; Common brickwork. 300mm thick; vertical straight wall complete with accessories. [2938.43] | 279,956.25 | 279,956.25 | FE | NORTH |
| CO-SU-FE-N-AR-180 |  | Install all the Relevant Cladding and Finishes For Boundary Fence North | 6d | 2026-10-11 A | 2027-04-05 | CO-SU-FE-N-AR-170, CO-SU-FE-N-AR-150 | 60% | 6d | 2027-03-23 | 2027-03-29 | -54d | 0d | Skilled Labor [96 h]; Unskilled Labor [96 h]; Supply and install 33mm thick Lexan cladding blue complete with necessary framings & accessories all as per manufacturer's & architectural drawing. [283.58]; Supply and install 50mm thick random cut stone cladding complete with 600mm x 50mm thick coping, necessary framings, slotted anchor connection, steel tube framing, aluminum angles all necessary fittings & accessories as per manufacturer's detail & archite [3981.34]; Supply and install External plastering to walls and columns min. 15mm thick with cement mortar of specified grade including galvanized mesh, corner beads, angle beads, CE bonds to rough and smooth plaster complete the work as per drawing & specification. [4477.61]; Supply and install 2 coats of weatherproof paint at walls including one prime coat and two coats and putty to give smooth Surface as a base for paint including fiberglass tape to joints and all other accessories as per manufacturers approved specification [4477.61]; Supply and install MODON Signage with Logo Type 1 [3.73]; Supply and install MODON Signage Type 2 [3.73]; Supply and install "Triangle Style" signage [11.19] | 1,276,358.1 | 667,581.3 | FE | NORTH |
| CO-SU-FE-N-AR-170 |  | Insulation For Boundary Fence North | 11d | 2027-03-16 | 2027-03-28 | CO-SU-FE-N-AR-160, CO-SU-FE-N-EL-280, CO-SU-FE-N-AR-140 |  |  |  |  | -53d | 1d | Skilled Labor [132 h]; Unskilled Labor [132 h]; Two Layers of Bituminous Coating [12532]; 20x20 Approved Polysulfide Joint Sealant [115.67]; 2 perpendicular layers of cold bitumen coats [22.39]; 2 layer of 4mm HDPE membrane, 2 perpendicular layers cold bitumen coats [22.39]; 1 layer EPOXY Paint 300 micron [22.39]; Membrane fully bonded to prime deck and upstand [22.39]; Geotextile Filter membrane uv resistance [22.39]; 85mm thick thermal insulation [22.39]; 1.5mm thick epdm waterproofing membrane [22.39] | 110,000.27 |  | FE | NORTH |
|  | 3 | **Electrical Work** |  | 2027-02-18 | 2027-04-12 |  |  |  |  |  |  |  |  |  |  |  |  |
| CO-SU-FE-N-EL-280 |  | Installation of Conduits and Cables for Electricial Works For Boundary Fence North | 7d | 2027-02-18 | 2027-02-25 | CO-SU-FE-N-AR-160, CO-SU-FE-N-EL-260 |  |  |  |  | -41d | 12d | Unskilled Labor [56 h]; Electrician [56 h]; Trench excavation to receive 2 nos 50mm diameter PVC Conduit, sand bedding and embedded with sand encasement and backfilling with excavated material complete with warning tape at approved depth [1262.06]; Control cable [1160.45]; CAT6A cable [1160.45]; 800mm depth minimum Trench excavation to receive 3 nos 50mm diameter PVC Conduit with spacer, sand bedding and embedded with sand encasement and backfill with excavated material well compacted complete with warning tape [1307.84]; Hot dipped galvanized cable conduits for CAT6A cable and Control Cables embedded to wall [110.07]; 4C-16mm2 CU/XLPE/PVC direct buried armored cable [479.48]; 4C-10mm2 CU/XLPE/PVC direct buried armored cable [373.13]; 16mm2 CU/PVC wire [373.13]; 10mm2 CU/PVC wire [479.48] | 154,292.08 |  | FE | NORTH |
| CO-SU-FE-N-EL-290 |  | Install, fixings, testing of all electrical finishes and lightings for Electricial Works For Boundary Fence North | 6d | 2027-04-06 | 2027-04-12 | CO-SU-FE-N-EL-280, CO-SU-FE-N-AR-180, CO-SU-FE-N-EL-270 SS |  |  |  |  | -51d | 35d | Unskilled Labor [48 h]; Electrician [48 h]; Magnetic Control Access barrier, Automatic Vehicular Barriers to be installed on ground with magnetic access [2.24]; IR Intrusion Detection System Quad Beams (Tx & Rx) (SL-350 QDM) [8.96]; Field Equipment Cabinet enclosed outdoor complete with precast concrete footing, suitable for parameter security and weather proof to the local enviroment. Not less than IP66 and IK rating. [8.21]; Supply and install 800mm x 800mm x 800mm height concrete handhole with bituminous paint all around, 690mm x 690mm handhold cover and sump cover.; including pit excavation [5.97]; 8 Port Industrial PoE Switch 10/100BaseT (0 deg to +70 deg. Celsius) [8.21]; 06C Optical Fiber SM [934.7]; 48C Optical Fiber SM [2615.67]; 48 Core Splice Closure [2.61]; Boom Barrier at Security Guard Room [2.24]; Pedestrian turnstile at Security Guard Room [2.24]; Access Control Unit [1.12]; Access Card Reader [1.12]; Magnetic Lock [1.12]; Break Glass [1.12]; Exit Push button [1.12]; Door Sensor [1.12]; Biometrics Reader [0.75]; Pole/Bollard mounted IP( PoE), Automatic Number Plate Recognition (ANPR, camera, 5MP,IP 66, IR illumination, 3-8mm varifocal, auto iris lens type price include the Bollard/pole) [2.24]; 12U rack dimension (W x H x L) 600 x 625 x 600 mm [0.37]; 4C-16mm2 CU/XLPE/PVC direct buried armored cable [753.73]; 4C-10mm2 CU/XLPE/PVC direct buried armored cable [608.21]; 16mm2 CU/PVC wire [753.73]; 10mm2 CU/PVC wire [608.21]; 400V, 3PH, 60Hz lighting control panel (LCP-02) [0.37]; 38W, 230V, 1PH, 60Hz fence, led linear uplight lighting, IP66 [50.75] | 486,987.29 |  | FE | NORTH |
|  | 4 | **Boundary Fence - East** |  | 2026-09-06 | 2027-06-03 |  |  |  |  |  |  |  |  |  |  |  |  |
|  | 1 | **Civil Work** |  | 2026-09-06 | 2027-01-27 |  |  |  |  |  |  |  |  |  |  |  |  |
| CO-SU-FE-N-CI-260 |  | Pouring for Plain Concrete For Boundary Fence East | 13d | 2026-09-06 A | 2026-09-20 A | CO-SU-FE-N-CI-250, PRO-FE-CV-DL-80 FF, CO-SU-FE-N-CI-210 | 100% |  | 2027-01-06 | 2027-01-20 |  |  | Skilled Labor [104 h]; Carpenter [208 h]; Carpenter Helper [104 h]; 100 mm thickness lean concrete under the foundation [239.19] | 66,379.69 | 66,379.69 | FE | NORTH |
| CO-SU-FE-N-CI-270 |  | Pouring R.C Footing For Boundary Fence East | 16d | 2026-09-21 A | 2026-10-12 A | CO-SU-FE-N-CI-260, CO-SU-FE-N-CI-220 | 100% |  | 2027-01-21 | 2027-02-08 |  |  | Skilled Labor [144 h]; Carpenter [144 h]; Steel fixer [144 h]; Foundation [525.61] | 312,570.17 | 312,570.17 | FE | NORTH |
| CO-SU-FE-N-CI-280 |  | Pouring R.C Columns For Boundary Fence East | 16d | 2026-09-26 A | 2027-01-06 | CO-SU-FE-N-CI-270, CO-SU-FE-N-CI-230 | 65% | 16d | 2027-01-04 | 2027-01-21 | -1d | 8d | Skilled Labor [144 h]; Carpenter [144 h]; Steel fixer [144 h]; Walls [332.09]; Columns [109.3] | 472,303.81 | 363,149.51 | FE | NORTH |
| CO-SU-FE-N-CI-250 |  | Excavation Work For Boundary Fence East | 16d | 2026-12-19 A | 2026-12-19 A | ENG-SH-GR-A-200, ENG-MS-GR-A-220, PRO-FE-CV-1DL-70, MS-CS-LV10 SS, CO-EW-240, CO-EW-200, CO-EW-230, CO-EW-220, CO-EW-250_R, CO-EW-210_R, CO-SU-FE-N-CI-200 | 100% |  | 2026-12-19 | 2027-01-05 |  |  | Skilled Labor [144 h]; Unskilled Labor [144 h]; Excavator [144 h]; 100 mm thickness lean concrete under the foundation [239.19] | 66,379.69 | 66,379.69 | FE | NORTH |
| CO-SU-FE-N-CI-290 |  | Pouring Beams For Boundary Fence East | 10d | 2027-01-17 | 2027-01-27 | CO-SU-FE-N-CI-280, CO-SU-FE-N-CI-240 |  |  |  |  | -9d | 77d | Skilled Labor [72 h]; Carpenter [72 h]; Steel fixer [72 h]; Beams [106.93] | 118,693.87 |  | FE | NORTH |
|  | 5 | **Finishing Work** |  | 2026-10-01 | 2027-06-03 |  |  |  |  |  |  |  |  |  |  |  |  |
|  | 4 | **Architictural work** |  | 2026-10-01 | 2027-05-29 |  |  |  |  |  |  |  |  |  |  |  |  |
| CO-SU-FE-N-AR-200 |  | Insulation For Boundary Fence East | 8d | 2026-10-01 A | 2026-10-12 A | CO-SU-FE-N-AR-190, CO-SU-FE-N-EL-300, CO-SU-FE-N-AR-170 | 100% |  | 2027-04-21 | 2027-04-29 |  |  | Skilled Labor [256 h]; Unskilled Labor [256 h]; Two Layers of Bituminous Coating [12531.8]; 20x20 Approved Polysulfide Joint Sealant [115.67]; 2 perpendicular layers of cold bitumen coats [22.39]; 2 layer of 4mm HDPE membrane, 2 perpendicular layers cold bitumen coats [22.39]; 1 layer EPOXY Paint 300 micron [22.39]; Membrane fully bonded to prime deck and upstand [22.39]; Geotextile Filter membrane uv resistance [22.39]; 85mm thick thermal insulation [22.39]; 1.5mm thick epdm waterproofing membrane [22.39] | 109,998.78 | 109,998.78 | FE | NORTH |
| CO-SU-FE-N-AR-190 |  | Install Brick Work For Boundary Fence East | 11d | 2026-10-08 A | 2026-11-08 A | MS-CF-MV, CO-SU-FE-N-CI-290, CO-SU-FE-N-AR-160 | 100% |  | 2027-03-28 | 2027-04-08 |  |  | Mason [528 h]; Mason Helper [1056 h]; Common brickwork. 300mm thick; vertical straight wall complete with accessories. [2938.43] | 279,956.25 | 279,956.25 | FE | NORTH |
| CO-SU-FE-N-AR-210 |  | Install all the Relevant Cladding and Finishes For Boundary Fence East | 9d | 2027-05-13 | 2027-05-29 | CO-SU-FE-N-AR-200, CO-SU-FE-N-AR-180 |  |  |  |  | -86d | 0d | Skilled Labor [72 h]; Unskilled Labor [72 h]; Supply and install 33mm thick Lexan cladding blue complete with necessary framings & accessories all as per manufacturer's & architectural drawing. [283.58]; Supply and install 50mm thick random cut stone cladding complete with 600mm x 50mm thick coping, necessary framings, slotted anchor connection, steel tube framing, aluminum angles all necessary fittings & accessories as per manufacturer's detail & archite [3981.34]; Supply and install External plastering to walls and columns min. 15mm thick with cement mortar of specified grade including galvanized mesh, corner beads, angle beads, CE bonds to rough and smooth plaster complete the work as per drawing & specification. [4477.61]; Supply and install 2 coats of weatherproof paint at walls including one prime coat and two coats and putty to give smooth Surface as a base for paint including fiberglass tape to joints and all other accessories as per manufacturers approved specification [4477.61]; Supply and install MODON Signage with Logo Type 1 [3.73]; Supply and install MODON Signage Type 2 [3.73]; Supply and install "Triangle Style" signage [11.19] | 1,276,358.1 |  | FE | NORTH |
|  | 3 | **Electrical Work** |  | 2027-05-02 | 2027-06-03 |  |  |  |  |  |  |  |  |  |  |  |  |
| CO-SU-FE-N-EL-300 |  | Installation of Conduits and Cables for Electricial Works For Boundary Fence East | 10d | 2027-05-02 | 2027-05-12 | CO-SU-FE-N-AR-190, CO-SU-FE-N-EL-280 |  |  |  |  | -86d | 0d | Unskilled Labor [56 h]; Electrician [56 h]; Trench excavation to receive 2 nos 50mm diameter PVC Conduit, sand bedding and embedded with sand encasement and backfilling with excavated material complete with warning tape at approved depth [1262.06]; Control cable [1160.45]; CAT6A cable [1160.45]; 800mm depth minimum Trench excavation to receive 3 nos 50mm diameter PVC Conduit with spacer, sand bedding and embedded with sand encasement and backfill with excavated material well compacted complete with warning tape [1307.84]; Hot dipped galvanized cable conduits for CAT6A cable and Control Cables embedded to wall [110.07]; 4C-16mm2 CU/XLPE/PVC direct buried armored cable [479.48]; 4C-10mm2 CU/XLPE/PVC direct buried armored cable [373.13]; 16mm2 CU/PVC wire [373.13]; 10mm2 CU/PVC wire [479.48] | 154,292.08 |  | FE | NORTH |
| CO-SU-FE-N-EL-310 |  | Install, fixings, testing of all electrical finishes and lightings for Electricial Works For Boundary Fence East | 5d | 2027-05-30 | 2027-06-03 | CO-SU-FE-N-EL-300, CO-SU-FE-N-AR-210, CO-SU-FE-N-EL-290 |  |  |  |  | -86d | 23d | Unskilled Labor [32 h]; Electrician [32 h]; Magnetic Control Access barrier, Automatic Vehicular Barriers to be installed on ground with magnetic access [2.24]; IR Intrusion Detection System Quad Beams (Tx & Rx) (SL-350 QDM) [8.96]; Field Equipment Cabinet enclosed outdoor complete with precast concrete footing, suitable for parameter security and weather proof to the local enviroment. Not less than IP66 and IK rating. [8.21]; Supply and install 800mm x 800mm x 800mm height concrete handhole with bituminous paint all around, 690mm x 690mm handhold cover and sump cover.; including pit excavation [5.97]; 8 Port Industrial PoE Switch 10/100BaseT (0 deg to +70 deg. Celsius) [8.21]; 06C Optical Fiber SM [934.7]; 48C Optical Fiber SM [2615.67]; 48 Core Splice Closure [2.61]; Boom Barrier at Security Guard Room [2.24]; Pedestrian turnstile at Security Guard Room [2.24]; Access Control Unit [1.12]; Access Card Reader [1.12]; Magnetic Lock [1.12]; Break Glass [1.12]; Exit Push button [1.12]; Door Sensor [1.12]; Biometrics Reader [0.75]; Pole/Bollard mounted IP( PoE), Automatic Number Plate Recognition (ANPR, camera, 5MP,IP 66, IR illumination, 3-8mm varifocal, auto iris lens type price include the Bollard/pole) [2.24]; 12U rack dimension (W x H x L) 600 x 625 x 600 mm [0.37]; 4C-16mm2 CU/XLPE/PVC direct buried armored cable [753.73]; 4C-10mm2 CU/XLPE/PVC direct buried armored cable [608.21]; 16mm2 CU/PVC wire [753.73]; 10mm2 CU/PVC wire [608.21]; 400V, 3PH, 60Hz lighting control panel (LCP-02) [0.37]; 38W, 230V, 1PH, 60Hz fence, led linear uplight lighting, IP66 [50.75] | 486,987.29 |  | FE | NORTH |
|  | TC | **Testing and Comissioning** |  | 2027-06-22 | 2027-07-19 |  |  |  |  |  |  |  |  |  |  |  |  |
|  | INF | **Infrastructure Networks** |  | 2027-06-29 | 2027-07-19 |  |  |  |  |  |  |  |  |  |  |  |  |
|  | LV | **Low Voltage Network** |  | 2027-06-29 | 2027-07-12 |  |  |  |  |  |  |  |  |  |  |  |  |
| TC-LV-100 |  | Testing and Commissioning of Low Voltage Network | 12d | 2027-06-29 | 2027-07-12 | PRO-LV-DP-1DL-100, PRO-LV-DP-DL-100, CON-LV-DP-130, PRO-R25-RD-DL-170, PRO-RD-1DL-130, PRO-R25-RD-DL-100, PRO-RD-1DL-100, MS-MM-140, MS-MM-130, MS-CS-RD SS, ENG-SH-RD-A-100, ENG-SH-RD-A-110, ENG-MS-RD-A-30, ENG-MS-RD-A-20, ENG-MS-RD-A-10, ENG-MS-RD-A-40, CO-TE-MH-190, CO-TE-DW-160, CO-SL-CL-300, CO-SL-LP-380, CO-MV-ML-300, CO-IR-ML-180, CO-PW-FH-190, CO-PW-VC-250, CO-PW-ML-160, CO-TSE-ML-230, CO-SW-ML-160, CO-SW-MH-250, CO-SD-CB-200, CO-SD-ML-160, CO-SD-MH-260, CO-EW-210_R, CO-SL-LP-520, PRO-LV-TT-1DL-100, PRO-LV-TT-DL-100, CO-MV-TF-230, PRO-LV-DP-1DL-110, PRO-LV-DP-DL-120, PRO-R25-RD-DL-110, PRO-R25-RD-DL-110 FF, PRO-RD-1DL-110, PRO-RD-1DL-110 FF, CO-EW-220, CO-EW-220 FF, CO-SD-ML-190, CO-SD-ML-190 FF, CO-SD-MH-300, CO-SD-MH-300 FF, CO-SD-CB-230, CO-SD-CB-230 FF, CO-SW-ML-190, CO-SW-ML-190 FF, CO-SW-MH-300, CO-SW-MH-300 FF, CO-PW-ML-190, CO-PW-ML-190 FF, CO-PW-VC-280, CO-PW-VC-280 FF, CO-IR-ML-230, CO-IR-ML-230 FF, CO-TSE-ML-280, CO-TSE-ML-280 FF, CO-MV-ML-330, CO-MV-ML-330 FF, CO-SL-LP-430, CO-SL-LP-430 FF, CO-SL-CL-330, CO-SL-CL-330 FF, ENG-MS-RD-A-20 FF, ENG-MS-RD-A-30 FF, ENG-MS-RD-A-40 FF, PRO-R25-RD-DL-100 FF, CON-LV-HC-180 FF, CON-LV-ML-180 FF, ENG-MS-RD-A-10 FF, ENG-SH-RD-A-100 FF, ENG-SH-RD-A-110 FF, PRO-RD-1DL-100 FF, MS-MM-130 FF, MS-MM-140 FF, CO-TE-DW-200, CO-TE-DW-200 FF, CO-PW-FH-220, CO-PW-FH-220 FF, CO-TE-MH-220, CO-TE-MH-220 FF, CON-LV-DP-180 FF, CON-LV-DP-190, CON-LV-DP-110, CO-RD-PB-150 SS, CO-IR-TF-210, CO-IR-TF-210 FF, CO-TE-CTV-210, CO-TE-CTV-210 FF, CO-EW-230, CO-EW-230 FF, CO-SD-ML-220, CO-SD-ML-220 FF, CO-PW-ML-220, CO-PW-ML-220 FF, CO-PW-VC-310, CO-PW-VC-310 FF, CO-TSE-ML-330, CO-TSE-ML-330 FF, CO-MV-ML-360, CO-MV-ML-360 FF, CO-SL-LP-480, CO-SL-LP-480 FF, CO-SL-CL-360, CO-SL-CL-360 FF, CON-LV-HC-210 FF, CON-LV-ML-210 FF, CO-TE-DW-240, CO-TE-DW-240 FF, CO-PW-FH-250, CO-PW-FH-250 FF, CO-TE-MH-250, CO-TE-MH-250 FF, CO-RD-PB-140, CO-RD-PB-140 FF, CO-IR-ML-380, CO-IR-ML-380 FF, CO-SD-MH-220, CO-SD-MH-220 FF, PRO-SD-1DL-100, PRO-SD-1DL-100 FF, CO-SD-MH-200, CO-SD-MH-200 FF, PRO-R25-SD-DL-100, PRO-R25-SD-DL-100 FF, CO-SD-MH-190, CO-SD-MH-190 FF, ENG-MT-SD-ML-A-100, ENG-MT-SD-ML-A-100 FF, MS-CS-SD SS, ENG-MS-SD-ML-A-110, ENG-MS-SD-ML-A-110 FF, ENG-MT-SD-ML-A-110, ENG-MT-SD-ML-A-110 FF, ENG-SH-SD-ML-A-110, ENG-SH-SD-ML-A-110 FF, CO-SD-MH-180, CO-SD-MH-180 FF, CO-SD-ML-130, CO-SD-ML-130 FF, PRO-R25-SD-DL-110, PRO-R25-SD-DL-110 FF, PRO-R25-SD-DL-130, PRO-R25-SD-DL-130 FF, PRO-SD-1DL-130, PRO-SD-1DL-130 FF, PRO-SD-1DL-120, PRO-SD-1DL-120 FF, ENG-MT-SD-CB-A-110, ENG-MT-SD-CB-A-110 FF, ENG-SH-SD-CB-A-110, ENG-SH-SD-CB-A-110 FF, ENG-MS-SD-CB-A-110, ENG-MS-SD-CB-A-110 FF, PRO-SW-1DL-110 SS, ENG-MT-SW-ML-A-100, ENG-MT-SW-ML-A-100 FF, ENG-SH-SW-ML-A-110, ENG-SH-SW-ML-A-110 FF, MS-CS-SW SS, ENG-MS-SW-ML-A-110, ENG-MS-SW-ML-A-110 FF, PRO-SW-1DL-100, PRO-SW-1DL-100 FF, ENG-MT-SW-ML-A-110, ENG-MT-SW-ML-A-110 FF, PRO-LV-DP-1DL-100 FF, PRO-LV-DP-DL-100 FF, CON-LV-DP-120 FF, CON-LV-DP-190 FF, CON-LV-DP-110 FF, ENG-SH-MSN-A-120, ENG-SH-MSN-A-120 FF, ENG-SH-CTV-A-110, ENG-SH-CTV-A-110 FF, ENG-MS-CTV-A-110, ENG-MS-CTV-A-110 FF, ENG-MT-CTV-A-100, ENG-MT-CTV-A-100 FF, PRO-CTV-1DL-100, PRO-CTV-1DL-100 FF, MS-CS-TE SS, CO-MV-TF-250, CO-TE-MH-160, CO-TE-MH-160 FF, CO-TE-CTV-110, CO-TE-CTV-110 FF, T/C-IR FF, MS-CF-LO, CON-RD-MR-150, CON-LV-ML-120, CON-LV-TT-100, CON-LV-TT-110, CON-LV-ES-100, CO-RD-PB-150, CON-LV-HC-120, CON-LV-DP-120, CON-LV-ML-150, CON-LV-TT-120, CON-LV-HC-150, CON-LV-ML-180, CON-LV-TT-140, CON-LV-TT-150, CON-LV-ES-120, CON-LV-HC-180, CON-LV-DP-180, CON-LV-ML-210, CON-LV-TT-160, CON-LV-HC-210, CON-RD-MR-230, CON-LV-ML-240, CON-LV-TT-180, CON-LV-TT-190, CON-LV-ES-140, CO-RD-PB-230, CON-LV-HC-240, CON-LV-DP-240, CON-RD-MR-250, CO-RD-PB-250, CON-RD-MR-270, CO-RD-PB-270, CON-RD-MR-290, CO-RD-PB-290, CON-RD-MR-310, CO-RD-PB-310 |  |  |  |  | -110d | 0d | Road crossing ducts, 2 ways (2 x 150mm HDPE); Road crossing ducts, 2 ways (2 x 110mm UPVC); Road crossing ducts, 3 ways (3 x 110mm UPVC); 4C-300mm2 CU/XLPE / PVC ARMORED CABLE; 4C-240mm2 CU/XLPE / PVC ARMORED CABLE; 4C-185mm2 CU/XLPE / PVC ARMORED CABLE; 4C-50mm2 CU/XLPE / PVC ARMORED CABLE; 4C-16mm2 CU/XLPE / PVC ARMORED CABLE; 4C-16MM2 CU/XLPE / PVC CABLE; 1Cx150sq.mm2,Cu, PVC wire; 1Cx120sq.mm2,Cu, PVC wire; 1Cx95sq.mm,Cu, PVC wire; 1Cx70sq.mm2,Cu, PVC wire; 1Cx25sq.mm2,Cu, PVC wire; 1Cx16sq.mm2,Cu, PVC wire; 1Cx10sq.mm2,Cu, PVC wire; Supply and installation of KWH meter mounting frame including concrete block for installation of KWH meter according to the standards and specifications of SEC.; physical units [1459.2 h] |  |  | TC |  |

| ID | WBS | Activity | Duration | Start | Finish | Predecessors | Total float | Free float | Resources | 01- Network |
| --- | --- | --- | --- | --- | --- | --- | --- | --- | --- | --- |
|  | PW1 | **Irrigation Network** |  | 2027-06-29 | 2027-07-12 |  |  |  |  |  |
| T/C-IR |  | Testing and Commissioning of Irrigation Network | 12d | 2027-06-29 | 2027-07-12 | PRO-R25-RD-DL-170, PRO-RD-1DL-130, PRO-R25-RD-DL-100, PRO-RD-1DL-100, MS-MM-140, MS-MM-130, MS-CS-RD SS, ENG-SH-RD-A-100, ENG-SH-RD-A-110, ENG-MS-RD-A-30, ENG-MS-RD-A-20, ENG-MS-RD-A-10, ENG-MS-RD-A-40, CO-TE-MH-190, CO-TE-DW-160, CO-SL-CL-300, CO-SL-LP-380, CON-LV-HC-150, CON-LV-ML-150, CO-MV-ML-300, CO-IR-ML-180, CO-PW-FH-190, CO-PW-VC-250, CO-PW-ML-160, CO-TSE-ML-230, CO-SW-ML-160, CO-SW-MH-250, CO-SD-CB-200, CO-SD-ML-160, CO-SD-MH-260, CO-EW-210_R, CO-SL-LP-520, PRO-R25-RD-DL-110, PRO-RD-1DL-110, CO-EW-220, CO-SD-ML-190, CO-SD-MH-300, CO-SD-CB-230, CO-SW-ML-190, CO-SW-MH-300, CO-PW-ML-190, CO-PW-VC-280, CO-IR-ML-230, CO-TSE-ML-280, CO-MV-ML-330, CO-SL-LP-430, CO-SL-CL-330, CON-LV-HC-180, CON-LV-ML-180, CO-TE-DW-200, CO-PW-FH-220, CO-TE-MH-220, CON-LV-DP-180, CO-PW-TF-110, CO-PW-TF-130, ENG-MT-IR-ML-A-110, PRO-IR-1DL-110, PRO-R25-IR-DL-110, PRO-IR-1DL-100, CO-PW-ML-110, PRO-R25-IR-DL-100, ENG-SH-IR-ML-A-110, ENG-MS-IR-ML-A-110, ENG-MT-IR-ML-A-100, CO-PW-ML-100, MS-CS-IR SS, CO-EW-200, CO-IR-ML-190, CO-IR-ML-170, CO-IR-ML-160, CO-EW-240, CO-IR-ML-150, CO-SW-MH-240, CO-SW-MH-230, PRO-SW-1DL-110, PRO-R25-SW-DL-110, CO-SW-MH-220, ENG-MT-SW-ML-A-100, ENG-SH-SW-ML-A-110, MS-CS-SW SS, ENG-MS-SW-ML-A-110, CO-SD-MH-380, CO-SD-ML-250, CO-SW-MH-210, PRO-R25-SD-DL-110, PRO-R25-SD-DL-130, PRO-SD-1DL-130, PRO-SD-1DL-120, CO-SD-CB-190, ENG-MT-SD-CB-A-110, ENG-SH-SD-CB-A-110, ENG-MS-SD-CB-A-110, MS-CS-SD SS, CO-SD-CB-180, PRO-SW-1DL-100, PRO-R25-SW-DL-100, CO-SW-ML-150, ENG-MT-SW-ML-A-110, CO-SW-ML-140, CO-RD-PB-150 SS, CO-TE-CTV-210, CO-EW-230, CO-SD-ML-220, CO-PW-ML-220, CO-PW-VC-310, CO-TSE-ML-330, CO-MV-ML-360, CO-SL-LP-480, CO-SL-CL-360, CON-LV-HC-210, CON-LV-ML-210, CO-TE-DW-240, CO-PW-FH-250, CO-TE-MH-250, CO-RD-PB-140, CO-IR-ML-380, CO-SD-MH-220, PRO-SD-1DL-100, CO-SD-MH-200, PRO-R25-SD-DL-100, CO-SD-MH-190, ENG-MT-SD-ML-A-100, ENG-MS-SD-ML-A-110, ENG-MT-SD-ML-A-110, ENG-SH-SD-ML-A-110, CO-SD-MH-180, CO-SD-ML-130, PRO-SW-1DL-110 SS, PRO-LV-DP-1DL-100, PRO-LV-DP-DL-100, CON-LV-DP-120, CON-LV-DP-190, CON-LV-DP-110, ENG-SH-MSN-A-120, ENG-SH-CTV-A-110, ENG-MS-CTV-A-110, ENG-MT-CTV-A-100, PRO-CTV-1DL-100, MS-CS-TE SS, CO-TE-MH-160, CO-TE-CTV-110, T/C-TSE-10 FF, MS-CF-IR SS, CO-TSE-TF-170, CO-IR-TF-170, CO-TSE-TF-180, CO-IR-TF-180, CO-TSE-TF-190, CO-TSE-TF-200, CO-TSE-TF-210, CO-IR-TF-210, MS-CF-IR | -110d | 0d | pipe line O.D 32 mm PN 10, in depth 0 to 1.5 m; pipe line O.D 40 mm PN 10, in depth 0 to 1.5 m; pipe line O.D 50 mm PN 10, in depth 0 to 1.5 m; Gate valve 50 mm PN16; Direct Burried Gate valve 40 mm PN16; Pressure–compensating bubblers 110 Lit/Hr; Flushing Bronze gate valve dia 1.5" inside PVC box; Air release valve 1.5" inside PVC box; Extra flexible pressure compensating on surface inline dripline`s, O.D. is 16.1 mm; Electrical Solenoid Valve ( 1.5") inside PVC box; Electrical Solenoid Valve ( 2") inside PVC box; Quick coupling valve 1" inside a round valve box 10" size with a manual gate valve, hose swivel and key with all accessories; Advanced Irrigation controller subject to client approval, can connect with Centarl Control system and cabable to integrate with Smart City systems,BMS or Scada system ,Can record the real flow rate per stations; Decoder cables 12 AWG between valves and controllers, The cables shall be pulled through 32? UPVC conduit and inspection 10" round valve box every 100 meters, as per standard specification and drawings; Preparing the irrigation program for the entire system and providing technical services for monitoring and controlling the central irrigation systems by linking the controller with the Main Program System (by GSM).; physical units [1459.2 h] | TC |
|  | PW11 | **TSE Network** |  | 2027-06-29 | 2027-07-12 |  |  |  |  |  |
| T/C-TSE-10 |  | Testing and Commissioning of TSE Network | 12d | 2027-06-29 | 2027-07-12 | PRO-R25-RD-DL-170, PRO-RD-1DL-130, PRO-R25-RD-DL-100, PRO-RD-1DL-100, MS-MM-140, MS-MM-130, MS-CS-RD SS, ENG-SH-RD-A-100, ENG-SH-RD-A-110, ENG-MS-RD-A-30, ENG-MS-RD-A-20, ENG-MS-RD-A-10, ENG-MS-RD-A-40, CO-TE-MH-190, CO-TE-DW-160, CO-SL-CL-300, CO-SL-LP-380, CON-LV-HC-150, CON-LV-ML-150, CO-MV-ML-300, CO-IR-ML-180, CO-PW-FH-190, CO-PW-VC-250, CO-PW-ML-160, CO-TSE-ML-230, CO-SW-ML-160, CO-SW-MH-250, CO-SD-CB-200, CO-SD-ML-160, CO-SD-MH-260, CO-EW-210_R, CO-SL-LP-520, PRO-R25-RD-DL-110, PRO-RD-1DL-110, CO-EW-220, CO-SD-ML-190, CO-SD-MH-300, CO-SD-CB-230, CO-SW-ML-190, CO-SW-MH-300, CO-PW-ML-190, CO-PW-VC-280, CO-IR-ML-230, CO-TSE-ML-280, CO-MV-ML-330, CO-SL-LP-430, CO-SL-CL-330, CON-LV-HC-180, CON-LV-ML-180, CO-TE-DW-200, CO-PW-FH-220, CO-TE-MH-220, CON-LV-DP-180, CO-RD-PB-150 SS, CO-IR-TF-210, CO-TE-CTV-210, CO-EW-230, CO-SD-ML-220, CO-PW-ML-220, CO-PW-VC-310, CO-TSE-ML-330, CO-MV-ML-360, CO-SL-LP-480, CO-SL-CL-360, CON-LV-HC-210, CON-LV-ML-210, CO-TE-DW-240, CO-PW-FH-250, CO-TE-MH-250, CO-RD-PB-140, CO-IR-ML-380, CO-SD-MH-220, PRO-SD-1DL-100, CO-SD-MH-200, PRO-R25-SD-DL-100, CO-SD-MH-190, ENG-MT-SD-ML-A-100, MS-CS-SD SS, ENG-MS-SD-ML-A-110, ENG-MT-SD-ML-A-110, ENG-SH-SD-ML-A-110, CO-SD-MH-180, CO-SD-ML-130, PRO-R25-SD-DL-110, PRO-R25-SD-DL-130, PRO-SD-1DL-130, PRO-SD-1DL-120, ENG-MT-SD-CB-A-110, ENG-SH-SD-CB-A-110, ENG-MS-SD-CB-A-110, PRO-SW-1DL-110 SS, ENG-MT-SW-ML-A-100, ENG-SH-SW-ML-A-110, MS-CS-SW SS, ENG-MS-SW-ML-A-110, PRO-SW-1DL-100, ENG-MT-SW-ML-A-110, PRO-LV-DP-1DL-100, PRO-LV-DP-DL-100, CON-LV-DP-120, CON-LV-DP-190, CON-LV-DP-110, ENG-SH-MSN-A-120, ENG-SH-CTV-A-110, ENG-MS-CTV-A-110, ENG-MT-CTV-A-100, PRO-CTV-1DL-100, MS-CS-TE SS, CO-TE-MH-160, CO-TE-CTV-110, T/C-PW FF, CO-TSE-TF-170, CON-RD-MR-150, CO-TSE-TF-180, CO-TSE-TF-190, CO-TSE-TF-200, CON-RD-MR-230, CON-RD-MR-250, CON-RD-MR-270, CON-RD-MR-290, CON-RD-MR-310, CO-TSE-TF-210 | -110d | 0d | Depth Between 0m to 1.50m; Depth Between 1.50m to 2.50m; Depth > 2.50m; Gate valves dia 50 mm; Gate valves dia 100 mm; Gate valves dia 150 mm; Gate valves dia 200 mm; Air valves with dia 50 mm; Washout valve dia 100 mm; Wash out chamber (2500x 2500mm); Air valve chamber (1000x 1000 mm); Flow meter chamber (1500x 3000 mm); Flow meter dia 150 mm; Glass Fused Bolted (GLS) 1500 m3 Tank with associated accessories & manufacturer recommendation for the foundation; physical units [1459.2 h] | TC |
|  | PW | **Potable Water Network** |  | 2027-06-29 | 2027-07-12 |  |  |  |  |  |
| T/C-PW |  | Testing and Commissioning of Potable Water Network | 12d | 2027-06-29 | 2027-07-12 | PRO-R25-RD-DL-170, PRO-RD-1DL-130, PRO-R25-RD-DL-100, PRO-RD-1DL-100, MS-MM-140, MS-MM-130, MS-CS-RD SS, ENG-SH-RD-A-100, ENG-SH-RD-A-110, ENG-MS-RD-A-30, ENG-MS-RD-A-20, ENG-MS-RD-A-10, ENG-MS-RD-A-40, CO-TE-MH-190, CO-TE-DW-160, CO-SL-CL-300, CO-SL-LP-380, CON-LV-HC-150, CON-LV-ML-150, CO-MV-ML-300, CO-IR-ML-180, CO-PW-FH-190, CO-PW-VC-250, CO-PW-ML-160, CO-TSE-ML-230, CO-SW-ML-160, CO-SW-MH-250, CO-SD-CB-200, CO-SD-ML-160, CO-SD-MH-260, CO-EW-210_R, CO-SL-LP-520, PRO-R25-RD-DL-110, PRO-RD-1DL-110, CO-EW-220, CO-SD-ML-190, CO-SD-MH-300, CO-SD-CB-230, CO-SW-ML-190, CO-SW-MH-300, CO-PW-ML-190, CO-PW-VC-280, CO-IR-ML-230, CO-TSE-ML-280, CO-MV-ML-330, CO-SL-LP-430, CO-SL-CL-330, CON-LV-HC-180, CON-LV-ML-180, CO-TE-DW-200, CO-PW-FH-220, CO-TE-MH-220, CON-LV-DP-180, CO-RD-PB-150 SS, CO-IR-TF-210, CO-TE-CTV-210, CO-EW-230, CO-SD-ML-220, CO-PW-ML-220, CO-PW-VC-310, CO-TSE-ML-330, CO-MV-ML-360, CO-SL-LP-480, CO-SL-CL-360, CON-LV-HC-210, CON-LV-ML-210, CO-TE-DW-240, CO-PW-FH-250, CO-TE-MH-250, CO-RD-PB-140, CO-IR-ML-380, CO-SD-MH-220, PRO-SD-1DL-100, CO-SD-MH-200, PRO-R25-SD-DL-100, CO-SD-MH-190, ENG-MT-SD-ML-A-100, MS-CS-SD SS, ENG-MS-SD-ML-A-110, ENG-MT-SD-ML-A-110, ENG-SH-SD-ML-A-110, CO-SD-MH-180, CO-SD-ML-130, PRO-R25-SD-DL-110, PRO-R25-SD-DL-130, PRO-SD-1DL-130, PRO-SD-1DL-120, ENG-MT-SD-CB-A-110, ENG-SH-SD-CB-A-110, ENG-MS-SD-CB-A-110, PRO-SW-1DL-110 SS, ENG-MT-SW-ML-A-100, ENG-SH-SW-ML-A-110, MS-CS-SW SS, ENG-MS-SW-ML-A-110, PRO-SW-1DL-100, ENG-MT-SW-ML-A-110, PRO-LV-DP-1DL-100, PRO-LV-DP-DL-100, CON-LV-DP-120, CON-LV-DP-190, CON-LV-DP-110, ENG-SH-MSN-A-120, ENG-SH-CTV-A-110, ENG-MS-CTV-A-110, ENG-MT-CTV-A-100, PRO-CTV-1DL-100, MS-CS-TE SS, CO-TE-MH-160, CO-TE-CTV-110, T/C-SW FF, CO-PW-TF-110, CO-PW-TF-100, CO-PW-TF-120, CON-RD-MR-150, CO-PW-TF-130, CO-PW-TF-150, CO-PW-TF-140, CO-PW-TF-160, CO-PW-TF-180, CO-PW-TF-170, CO-PW-TF-190, CO-PW-TF-210, CO-PW-TF-200, CON-RD-MR-230, CON-RD-MR-250, CON-RD-MR-270, CON-RD-MR-290, CON-RD-MR-310, CO-PW-TF-220, MS-CF-PW | -110d | 0d | Depth Between 0m to 1.50m; Depth Between 1.50m to 2.50m; Depth > 2.50m; Gate valves Dia 50 mm; Gate valves Dia 100 mm; Gate valves Dia 150 mm; Gate valves Dia 250 mm; Air valves with Dia 50 mm; Washout valve Dia 100 mm; Wash out chamber (2500x 2500mm); Air valve chamber (1000x 1000 mm); Flow meter chamber (1500x 2500 mm); Flow meter dia 100 mm; 3-outlet fire hydrant (2 x 2.5 inch and 1 x 4.5 inch) in the form of a separate dry vacuum cylinder, complete according to drawings.; Glass Fused Bolted (GLS) 1500 m3 Tank with associated accessories & manufacturer recommendation for the foundation; physical units [1459.2 h] | TC |
|  | SW | **Sewage Network** |  | 2027-06-29 | 2027-07-12 |  |  |  |  |  |
| T/C-SW |  | Testing and Commissioning of Sewage Network | 12d | 2027-06-29 | 2027-07-12 | MS-MO-50, MS-MO-20, PRO-R25-RD-DL-170, PRO-RD-1DL-130, PRO-R25-RD-DL-100, PRO-RD-1DL-100, MS-MM-140, MS-MM-130, MS-CS-RD SS, ENG-SH-RD-A-100, ENG-SH-RD-A-110, ENG-MS-RD-A-30, ENG-MS-RD-A-20, ENG-MS-RD-A-10, ENG-MS-RD-A-40, CO-TE-MH-190, CO-TE-DW-160, CO-SL-CL-300, CO-SL-LP-380, CON-LV-HC-150, CON-LV-ML-150, CO-MV-ML-300, CO-IR-ML-180, CO-PW-FH-190, CO-PW-VC-250, CO-PW-ML-160, CO-TSE-ML-230, CO-SW-ML-160, CO-SW-MH-250, CO-SD-CB-200, CO-SD-ML-160, CO-SD-MH-260, CO-EW-210_R, CO-SL-LP-520, PRO-R25-RD-DL-110, PRO-RD-1DL-110, CO-EW-220, CO-SD-ML-190, CO-SD-MH-300, CO-SD-CB-230, CO-SW-ML-190, CO-SW-MH-300, CO-PW-ML-190, CO-PW-VC-280, CO-IR-ML-230, CO-TSE-ML-280, CO-MV-ML-330, CO-SL-LP-430, CO-SL-CL-330, CON-LV-HC-180, CON-LV-ML-180, CO-TE-DW-200, CO-PW-FH-220, CO-TE-MH-220, CON-LV-DP-180, PRO-SW-1DL-110, PRO-R25-SW-DL-110, ENG-MT-SW-ML-A-100, ENG-SH-SW-ML-A-110, MS-CS-SW SS, CO-EW-200, ENG-MS-SW-ML-A-110, CO-SD-MH-220, CO-SD-ML-130, PRO-R25-SD-DL-110, PRO-R25-SD-DL-130, PRO-SD-1DL-130, PRO-SD-1DL-120, ENG-MT-SD-CB-A-110, ENG-SH-SD-CB-A-110, ENG-MS-SD-CB-A-110, MS-CS-SD SS, PRO-SW-1DL-100, PRO-R25-SW-DL-100, ENG-MT-SW-ML-A-110, PRO-SD-1DL-140, PRO-R25-SD-DL-140, CO-SW-MH-240, CO-SW-MH-230, CO-SW-MH-220, CO-EW-240, CO-SD-MH-380, CO-SD-ML-250, CO-SW-MH-210, CO-SD-CB-190, CO-SD-CB-180, CO-SW-ML-150, CO-SW-ML-140, CO-RD-PB-150 SS, CO-IR-TF-210, CO-TE-CTV-210, CO-EW-230, CO-SD-ML-220, CO-PW-ML-220, CO-PW-VC-310, CO-TSE-ML-330, CO-MV-ML-360, CO-SL-LP-480, CO-SL-CL-360, CON-LV-HC-210, CON-LV-ML-210, CO-TE-DW-240, CO-PW-FH-250, CO-TE-MH-250, CO-RD-PB-140, CO-IR-ML-380, PRO-SD-1DL-100, CO-SD-MH-200, PRO-R25-SD-DL-100, CO-SD-MH-190, ENG-MT-SD-ML-A-100, ENG-MS-SD-ML-A-110, ENG-MT-SD-ML-A-110, ENG-SH-SD-ML-A-110, CO-SD-MH-180, PRO-SW-1DL-110 SS, PRO-LV-DP-1DL-100, PRO-LV-DP-DL-100, CON-LV-DP-120, CON-LV-DP-190, CON-LV-DP-110, ENG-SH-MSN-A-120, ENG-SH-CTV-A-110, ENG-MS-CTV-A-110, ENG-MT-CTV-A-100, PRO-CTV-1DL-100, MS-CS-TE SS, CO-TE-MH-160, CO-TE-CTV-110, T/C-DPO FF, CON-RD-MR-150, CO-SW-TF-230, CO-SW-TF-250, CO-SW-TF-270, CO-SW-TF-290, CON-RD-MR-230, CON-RD-MR-250, CON-RD-MR-270, CON-RD-MR-290, CON-RD-MR-310 | -110d | 0d | Depth Between 0m to 1.50m; Depth Between 1.50m to 2.50m; Depth > 2.50m; Depth Between 2.50m to 3.50m; Depth Between 3.50m to 4.50m; Depth Between 4.50m to 5.50m; Depth > 5.50m; HDPE Force Main (PE 100, SDR 11, PN 16 bar) DN 160 mm diameter, in trenches depth: 0- 1.5m; HDPE Force Main (PE 100, SDR 11, PN 16 bar) DN 160 mm diameter, in trenches depth: 1.51- 2.5m; Air valves with dia 50 mm; Gate valves Dia 50 mm; Air valve chamber (1000x 1000 mm); Depth: 0 - 1.5m; Depth: 1.51 - 2.5m; Depth: 2.51 - 3.5m; Depth: 3.51 - 4.5m; Depth: 4.51 - 5.5m; physical units [1459.2 h] | TC |
|  | SD | **Storm Drainage Network** |  | 2027-06-29 | 2027-07-19 |  |  |  |  |  |
| T/C-DPO |  | Testing and Commissioning of Storm Drainage Ponds | 12d | 2027-06-29 | 2027-07-12 | MS-MO-20, MS-MO-50, PRO-R25-RD-DL-170, PRO-RD-1DL-130, PRO-R25-RD-DL-100, PRO-RD-1DL-100, MS-MM-140, MS-MM-130, MS-CS-RD SS, ENG-SH-RD-A-100, ENG-SH-RD-A-110, ENG-MS-RD-A-30, ENG-MS-RD-A-20, ENG-MS-RD-A-10, ENG-MS-RD-A-40, CO-TE-MH-190, CO-TE-DW-160, CO-SL-CL-300, CO-SL-LP-380, CON-LV-HC-150, CON-LV-ML-150, CO-MV-ML-300, CO-IR-ML-180, CO-PW-FH-190, CO-PW-VC-250, CO-PW-ML-160, CO-TSE-ML-230, CO-SW-ML-160, CO-SW-MH-250, CO-SD-CB-200, CO-SD-ML-160, CO-SD-MH-260, CO-EW-210_R, CO-SL-LP-520, PRO-R25-RD-DL-110, PRO-RD-1DL-110, CO-EW-220, CO-SD-ML-190, CO-SD-MH-300, CO-SD-CB-230, CO-SW-ML-190, CO-SW-MH-300, CO-PW-ML-190, CO-PW-VC-280, CO-IR-ML-230, CO-TSE-ML-280, CO-MV-ML-330, CO-SL-LP-430, CO-SL-CL-330, CON-LV-HC-180, CON-LV-ML-180, CO-TE-DW-200, CO-PW-FH-220, CO-TE-MH-220, CON-LV-DP-180, CO-RD-PB-150 SS, CO-IR-TF-210, CO-TE-CTV-210, CO-EW-230, CO-SD-ML-220, CO-PW-ML-220, CO-PW-VC-310, CO-TSE-ML-330, CO-MV-ML-360, CO-SL-LP-480, CO-SL-CL-360, CON-LV-HC-210, CON-LV-ML-210, CO-TE-DW-240, CO-PW-FH-250, CO-TE-MH-250, CO-RD-PB-140, CO-IR-ML-380, CO-SD-MH-220, PRO-SD-1DL-100, CO-SD-MH-200, PRO-R25-SD-DL-100, CO-SD-MH-190, ENG-MT-SD-ML-A-100, MS-CS-SD SS, ENG-MS-SD-ML-A-110, ENG-MT-SD-ML-A-110, ENG-SH-SD-ML-A-110, CO-SD-MH-180, CO-SD-ML-130, PRO-R25-SD-DL-110, PRO-R25-SD-DL-130, PRO-SD-1DL-130, PRO-SD-1DL-120, ENG-MT-SD-CB-A-110, ENG-SH-SD-CB-A-110, ENG-MS-SD-CB-A-110, PRO-SW-1DL-110 SS, ENG-MT-SW-ML-A-100, ENG-SH-SW-ML-A-110, MS-CS-SW SS, ENG-MS-SW-ML-A-110, PRO-SW-1DL-100, ENG-MT-SW-ML-A-110, PRO-LV-DP-1DL-100, PRO-LV-DP-DL-100, CON-LV-DP-120, CON-LV-DP-190, CON-LV-DP-110, ENG-SH-MSN-A-120, ENG-SH-CTV-A-110, ENG-MS-CTV-A-110, ENG-MT-CTV-A-100, PRO-CTV-1DL-100, MS-CS-TE SS, CO-TE-MH-160, CO-TE-CTV-110, T/C-SL FF, MS-CF-SD, CO-SD-PO-110-P1, CO-SD-PO-110-P2 | -110d | 0d | Depth > 3.50m; physical units [1459.2 h] | TC |
| T/C-SD |  | Testing and Commissioning of Storm Drainage Ponds and Storm Drainage Network | 12d | 2027-07-06 | 2027-07-19 | MS-MO-50, MS-MO-20, PRO-R25-RD-DL-170, PRO-RD-1DL-130, PRO-R25-RD-DL-100, PRO-RD-1DL-100, MS-MM-140, MS-MM-130, MS-CS-RD SS, ENG-SH-RD-A-100, ENG-SH-RD-A-110, ENG-MS-RD-A-30, ENG-MS-RD-A-20, ENG-MS-RD-A-10, ENG-MS-RD-A-40, CO-TE-MH-190, CO-TE-DW-160, CO-SL-CL-300, CO-SL-LP-380, CON-LV-HC-150, CON-LV-ML-150, CO-MV-ML-300, CO-IR-ML-180, CO-PW-FH-190, CO-PW-VC-250, CO-PW-ML-160, CO-TSE-ML-230, CO-SW-ML-160, CO-SW-MH-250, CO-SD-CB-200, CO-SD-ML-160, CO-SD-MH-260, CO-EW-210_R, CO-SL-LP-520, PRO-R25-RD-DL-110, PRO-RD-1DL-110, CO-EW-220, CO-SD-ML-190, CO-SD-MH-300, CO-SD-CB-230, CO-SW-ML-190, CO-SW-MH-300, CO-PW-ML-190, CO-PW-VC-280, CO-IR-ML-230, CO-TSE-ML-280, CO-MV-ML-330, CO-SL-LP-430, CO-SL-CL-330, CON-LV-HC-180, CON-LV-ML-180, CO-TE-DW-200, CO-PW-FH-220, CO-TE-MH-220, CON-LV-DP-180, CO-SD-ML-130, PRO-R25-SD-DL-110, PRO-R25-SD-DL-130, PRO-SD-1DL-130, PRO-SD-1DL-120, ENG-MT-SD-CB-A-110, ENG-SH-SD-CB-A-110, ENG-MS-SD-CB-A-110, MS-CS-SD SS, CO-SD-MH-220, PRO-SD-1DL-140, PRO-R25-SD-DL-140, PRO-SD-1DL-150, PRO-R25-SD-DL-150, CO-SD-ML-250, CO-SD-PO-110-P1, CO-SD-CB-190, CO-SD-CB-180, CO-SD-CB-TF-190, CO-SD-MH-380, CO-RD-PB-150 SS, CO-IR-TF-210, CO-TE-CTV-210, CO-EW-230, CO-SD-ML-220, CO-PW-ML-220, CO-PW-VC-310, CO-TSE-ML-330, CO-MV-ML-360, CO-SL-LP-480, CO-SL-CL-360, CON-LV-HC-210, CON-LV-ML-210, CO-TE-DW-240, CO-PW-FH-250, CO-TE-MH-250, CO-RD-PB-140, CO-IR-ML-380, PRO-SD-1DL-100, CO-SD-MH-200, PRO-R25-SD-DL-100, CO-SD-MH-190, ENG-MT-SD-ML-A-100, ENG-MS-SD-ML-A-110, ENG-MT-SD-ML-A-110, ENG-SH-SD-ML-A-110, CO-SD-MH-180, PRO-SW-1DL-110 SS, ENG-MT-SW-ML-A-100, ENG-SH-SW-ML-A-110, MS-CS-SW SS, ENG-MS-SW-ML-A-110, PRO-SW-1DL-100, ENG-MT-SW-ML-A-110, PRO-LV-DP-1DL-100, PRO-LV-DP-DL-100, CON-LV-DP-120, CON-LV-DP-190, CON-LV-DP-110, ENG-SH-MSN-A-120, ENG-SH-CTV-A-110, ENG-MS-CTV-A-110, ENG-MT-CTV-A-100, PRO-CTV-1DL-100, MS-CS-TE SS, CO-TE-MH-160, CO-TE-CTV-110, T/C-SL FF, MS-CF-SD, CO-SD-ML-TF-100, CO-SD-MH-TF-210, CO-SD-PO-110-P2, CON-RD-MR-150, CO-SD-ML-TF-110, CO-SD-CB-TF-170, CO-SD-MH-TF-230, CO-SD-CB-TF-180, CO-SD-ML-TF-120, CO-SD-CB-TF-200, CO-SD-MH-TF-250, CO-SD-CB-TF-210, CO-SD-ML-TF-130, CO-SD-CB-TF-260, CO-SD-MH-TF-290, CON-RD-MR-230, CON-RD-MR-250, CON-RD-MR-270, CON-RD-MR-290, CON-RD-MR-310, T/C-DPO FF | -116d | 0d | Depth Between 0m to 1.50m; Depth Between 1.50m to 2.50m; Depth Between 2.50m to 3.50m; Depth > 3.50m; Depth Between 3.50m to 4.50m; Depth > 4.50m; MH depth 1.5 - 2.5m; MH depth 2.5 - 3.5m; MH depth 3.5 - 4.5m; MH depth > 4.50m; MH depth 2.5 -3.5m; MH depth > 3.50m; GRP Pipe, 900mm diameter with Depth Between 3.51m to 4.50m; Single Catch Basin 1000mm x 1000mm; Double Catch Basin 1200mm x 2300mm; Finished grouted riprap for Pond 300mm as per drawings; physical units [1459.2 h] | TC |
|  | SL | **Street Lighting Network** |  | 2027-06-29 | 2027-07-12 |  |  |  |  |  |
| T/C-SL |  | Testing and Commissioning of Street Lighting Network | 12d | 2027-06-29 | 2027-07-12 | PRO-R25-RD-DL-170, PRO-RD-1DL-130, PRO-R25-RD-DL-100, PRO-RD-1DL-100, MS-MM-140, MS-MM-130, MS-CS-RD SS, ENG-SH-RD-A-100, ENG-SH-RD-A-110, ENG-MS-RD-A-30, ENG-MS-RD-A-20, ENG-MS-RD-A-10, ENG-MS-RD-A-40, CO-TE-MH-190, CO-TE-DW-160, CO-SL-CL-300, CO-SL-LP-380, CON-LV-HC-150, CON-LV-ML-150, CO-MV-ML-300, CO-IR-ML-180, CO-PW-FH-190, CO-PW-VC-250, CO-PW-ML-160, CO-TSE-ML-230, CO-SW-ML-160, CO-SW-MH-250, CO-SD-CB-200, CO-SD-ML-160, CO-SD-MH-260, CO-EW-210_R, CO-SL-LP-520, CO-SL-ES-250, PRO-R25-SL-DL-160 SS, ENG-MT-SL-DB-A-100, MS-CS-SL SS, PRO-R25-SL-DL-170, PRO-R25-RD-DL-110, PRO-RD-1DL-110, CO-EW-220, CO-SD-ML-190, CO-SD-MH-300, CO-SD-CB-230, CO-SW-ML-190, CO-SW-MH-300, CO-PW-ML-190, CO-PW-VC-280, CO-IR-ML-230, CO-TSE-ML-280, CO-MV-ML-330, CO-SL-LP-430, CO-SL-CL-330, CON-LV-HC-180, CON-LV-ML-180, CO-TE-DW-200, CO-PW-FH-220, CO-TE-MH-220, CON-LV-DP-180, CO-SL-DB-340, CO-SL-ES-330, PRO-R25-SL-DL-160, CO-SL-LP-570, CO-SL-CL-420, CO-EW-200, CO-SL-ES-310, CO-SL-CL-390, CO-EW-240, CO-RD-PB-150 SS, CO-IR-TF-210, CO-TE-CTV-210, CO-EW-230, CO-SD-ML-220, CO-PW-ML-220, CO-PW-VC-310, CO-TSE-ML-330, CO-MV-ML-360, CO-SL-LP-480, CO-SL-CL-360, CON-LV-HC-210, CON-LV-ML-210, CO-TE-DW-240, CO-PW-FH-250, CO-TE-MH-250, CO-RD-PB-140, CO-IR-ML-380, CO-SD-MH-220, PRO-SD-1DL-100, CO-SD-MH-200, PRO-R25-SD-DL-100, CO-SD-MH-190, ENG-MT-SD-ML-A-100, MS-CS-SD SS, ENG-MS-SD-ML-A-110, ENG-MT-SD-ML-A-110, ENG-SH-SD-ML-A-110, CO-SD-MH-180, CO-SD-ML-130, PRO-R25-SD-DL-110, PRO-R25-SD-DL-130, PRO-SD-1DL-130, PRO-SD-1DL-120, ENG-MT-SD-CB-A-110, ENG-SH-SD-CB-A-110, ENG-MS-SD-CB-A-110, PRO-SW-1DL-110 SS, ENG-MT-SW-ML-A-100, ENG-SH-SW-ML-A-110, MS-CS-SW SS, ENG-MS-SW-ML-A-110, PRO-SW-1DL-100, ENG-MT-SW-ML-A-110, PRO-LV-DP-1DL-100, PRO-LV-DP-DL-100, CON-LV-DP-120, CON-LV-DP-190, CON-LV-DP-110, ENG-SH-MSN-A-120, ENG-SH-CTV-A-110, ENG-MS-CTV-A-110, ENG-MT-CTV-A-100, PRO-CTV-1DL-100, MS-CS-TE SS, CO-SL-ES-290, CO-TE-MH-160, CO-TE-CTV-110, T/C-TE FF, MS-CF-SL, MS-CF-SL SS, CO-SL-TF-410, CO-SL-LP-370, CO-SL-TF-440, CO-SL-TF-450, CO-SL-TF-460, CO-SL-LP-420, CO-SL-TF-490, CO-SL-LP-470, CO-SL-TF-530, CO-SL-LP-530, CO-SL-TF-570, CO-SL-LP-580 | -110d | 0d | Street Lighting panels LCP (01); Lighting poles with 1 arm, height of (12) meters, including the power distribution box, cables, and RCC foundation.; Lighting poles with 2 arms, height of (12) meters, including the power distribution box, cables, and RCC foundation.; Street Lighting( LED) Luminaire of Output ? 20,965 lumen complete with control gear and lamp, (129.1) WATT.; Including earthing of lighting poles, masts, feeder pillars, unit substations and LV feeders.; Columns; physical units [1459.2 h] | TC |
|  | TE | **Telecom and Light Current Network** |  | 2027-06-29 | 2027-07-12 |  |  |  |  |  |
| T/C-TE |  | Testing and Commissioning of Telecom and Light Current Networks | 12d | 2027-06-29 | 2027-07-12 | PRO-R25-RD-DL-170, PRO-RD-1DL-130, PRO-R25-RD-DL-100, PRO-RD-1DL-100, MS-MM-140, MS-MM-130, MS-CS-RD SS, ENG-SH-RD-A-100, ENG-SH-RD-A-110, ENG-MS-RD-A-30, ENG-MS-RD-A-20, ENG-MS-RD-A-10, ENG-MS-RD-A-40, CO-TE-MH-190, CO-TE-DW-160, CO-SL-CL-300, CO-SL-LP-380, CON-LV-HC-150, CON-LV-ML-150, CO-MV-ML-300, CO-IR-ML-180, CO-PW-FH-190, CO-PW-VC-250, CO-PW-ML-160, CO-TSE-ML-230, CO-SW-ML-160, CO-SW-MH-250, CO-SD-CB-200, CO-SD-ML-160, CO-SD-MH-260, CO-EW-210_R, CO-SL-LP-520, PRO-R25-RD-DL-110, PRO-RD-1DL-110, CO-EW-220, CO-SD-ML-190, CO-SD-MH-300, CO-SD-CB-230, CO-SW-ML-190, CO-SW-MH-300, CO-PW-ML-190, CO-PW-VC-280, CO-IR-ML-230, CO-TSE-ML-280, CO-MV-ML-330, CO-SL-LP-430, CO-SL-CL-330, CON-LV-HC-180, CON-LV-ML-180, CO-TE-DW-200, CO-PW-FH-220, CO-TE-MH-220, CON-LV-DP-180, CO-TE-CTV-240, CO-TE-CTV-150 SS, CO-RD-PB-150 SS, CO-IR-TF-210, CO-TE-CTV-210, CO-EW-230, CO-SD-ML-220, CO-PW-ML-220, CO-PW-VC-310, CO-TSE-ML-330, CO-MV-ML-360, CO-SL-LP-480, CO-SL-CL-360, CON-LV-HC-210, CON-LV-ML-210, CO-TE-DW-240, CO-PW-FH-250, CO-TE-MH-250, CO-RD-PB-140, CO-IR-ML-380, CO-SD-MH-220, PRO-SD-1DL-100, CO-SD-MH-200, PRO-R25-SD-DL-100, CO-SD-MH-190, ENG-MT-SD-ML-A-100, MS-CS-SD SS, ENG-MS-SD-ML-A-110, ENG-MT-SD-ML-A-110, ENG-SH-SD-ML-A-110, CO-SD-MH-180, CO-SD-ML-130, PRO-R25-SD-DL-110, PRO-R25-SD-DL-130, PRO-SD-1DL-130, PRO-SD-1DL-120, ENG-MT-SD-CB-A-110, ENG-SH-SD-CB-A-110, ENG-MS-SD-CB-A-110, PRO-SW-1DL-110 SS, ENG-MT-SW-ML-A-100, ENG-SH-SW-ML-A-110, MS-CS-SW SS, ENG-MS-SW-ML-A-110, PRO-SW-1DL-100, ENG-MT-SW-ML-A-110, PRO-LV-DP-1DL-100, PRO-LV-DP-DL-100, CON-LV-DP-120, CON-LV-DP-190, CON-LV-DP-110, ENG-SH-MSN-A-120, ENG-SH-CTV-A-110, ENG-MS-CTV-A-110, ENG-MT-CTV-A-100, PRO-CTV-1DL-100, MS-CS-TE SS, CO-TE-MH-160, CO-TE-CTV-110, T/C-MV FF, MS-CF-TE, CO-TE-CTV-TF-140, CON-RD-MR-150, CO-TE-CTV-TF-180, CO-TE-CTV-TF-220, CO-TE-CTV-TF-260, CON-RD-MR-230, CON-RD-MR-250, CON-RD-MR-270, CON-RD-MR-290, CON-RD-MR-310, CO-TE-CTV-TF-310, CO-TE-CTV-TF-320, CO-TE-CTV-TF-330, CO-TE-CTV-TF-340, CO-TE-CTV-TF-350, CO-TE-CTV-TF-360 | -110d | 0d | 2-ways ducts, 32mm diameter; 2x3-ways ducts, 50mm diameter; 8-ways ducts, 6 x 160mm & 2 x 100mm; 2 PVC ducts 150x200 mm (60mm diameter); 4 PVC ducts 600x150 mm (60mm diameter); 8 PVC ducts 1000x300 mm (60mm diameter); 6 PVC ducts 600x800 mm (60mm diameter); Manhole Type 2 (1600 x 1600 x 2000); Manhole Type 3 (1200 x 1200 x 2000); Manhole Type 1 (800 x 600 x 1200); NVR Server with RAID (5, 6 or 10) to record all cameras storage 80TB with all hardware / software / licenses etc.; VMS Server with RAID (5, 6 or 10) complete Hardware / Software with one Color Laser Printer and all associated accessories for central management.; Licenses for Cameras, Workstations and Keyboards; Work Station (MMI with two monitors each, for Monitoring for CCTV & ACS); Keyboard with joystick for CCTV with all accessories as per specification; Pole mounted IP( PoE) Fixed camera, 5MP,IP 66, IR illumination, 3-8mm varifocal, auto iris lens type; Wall mounted IP( PoE) Fixed camera, 5MP,IP 66, IR illumination, 3-8mm varifocal, auto iris lens type; 5MP Dome camera ceiling Mounted IP (PoE) indoor; 5MP PTZ Multi Sensor Camera IP(PoE) 360 Degree View Outdoor with accessories (IP 66); 8 Port Industrial PoE Switch 10/100BaseT (0 deg to +70 deg. Celsius); Filed Equipment cabinet (FEC), with fan and ventilation, NEMEX 4X ,door, minimum size (600x600x400mm), the cabinet/enclosure includes industrial switch and UPS.; IP Phone Communication server (hot standby) 50 Port equipped, Gateway, Gatekeeper, H.323, SIP, redundant Power etc.; IP Phone Voice gateway; Voice IP Phone; NMS Server for IP phone and NETWORK Elements; NMS Workstation; Firm Ware, software & licenses; Data Cable; Power Cable; Layer 3, 24 Port non-PoE switch10/1000BaseT/LX (-40 deg to +70 deg. Celsius), stack module and associated accessories for utility Telecom Server room; Layer 2, 24 Port non-PoE switch10/1000BaseT (-40 deg to +70 deg. Celsius), stack module and associated accessories for utility Telecom Server and Security Guard house room; Network Management System Server; Network Management System workstation; 42U rack dimension (W x H x L) 800 x 2000 x 1000 mm; 12U rack dimension (W x H x L) 600 x 625 x 600 mm; 06C Optical Fiber SM; 48C Optical Fiber SM; 48 Core Splice Closure; Optical fiber patch cord 5m; Data Cable (STP CAT 6A); 3C Power Cable armored 1.5mm2; 3C Power Cable armored 2.5 mm2; UTP CAT6A Patch Cord 1m/3m/5m; Access Control Unit; Access Card Reader; Magnetic Lock; Break Glass; Exit Push button; Door Sensor; Biometrics Reader; Smart Card Printer; Card Issue Work Station; Photographic Camera with stand; Interface modules with CCTV, Fire and other systems; 1-ways ducts, 6 x 50mm diameter; 6 PVC ducts 150x200 mm (60mm diameter); physical units [1459.2 h] | TC |
|  | MV | **Medium Voltage Network** |  | 2027-06-29 | 2027-07-12 |  |  |  |  |  |
| T/C-MV |  | Testing and Commissioning of Medium Voltage Network | 12d | 2027-06-29 | 2027-07-12 | PRO-R25-RD-DL-170, PRO-RD-1DL-130, PRO-R25-RD-DL-100, PRO-RD-1DL-100, MS-MM-140, MS-MM-130, MS-CS-RD SS, ENG-SH-RD-A-100, ENG-SH-RD-A-110, ENG-MS-RD-A-30, ENG-MS-RD-A-20, ENG-MS-RD-A-10, ENG-MS-RD-A-40, CO-TE-MH-190, CO-TE-DW-160, CO-SL-CL-300, CO-SL-LP-380, CON-LV-HC-150, CON-LV-ML-150, CO-MV-ML-300, CO-IR-ML-180, CO-PW-FH-190, CO-PW-VC-250, CO-PW-ML-160, CO-TSE-ML-230, CO-SW-ML-160, CO-SW-MH-250, CO-SD-CB-200, CO-SD-ML-160, CO-SD-MH-260, CO-EW-210_R, CO-SL-LP-520, PRO-R25-RD-DL-110, PRO-RD-1DL-110, CO-EW-220, CO-SD-ML-190, CO-SD-MH-300, CO-SD-CB-230, CO-SW-ML-190, CO-SW-MH-300, CO-PW-ML-190, CO-PW-VC-280, CO-IR-ML-230, CO-TSE-ML-280, CO-MV-ML-330, CO-SL-LP-430, CO-SL-CL-330, CON-LV-HC-180, CON-LV-ML-180, CO-TE-DW-200, CO-PW-FH-220, CO-TE-MH-220, CON-LV-DP-180, CO-RD-PB-150 SS, CO-IR-TF-210, CO-TE-CTV-210, CO-EW-230, CO-SD-ML-220, CO-PW-ML-220, CO-PW-VC-310, CO-TSE-ML-330, CO-MV-ML-360, CO-SL-LP-480, CO-SL-CL-360, CON-LV-HC-210, CON-LV-ML-210, CO-TE-DW-240, CO-PW-FH-250, CO-TE-MH-250, CO-RD-PB-140, CO-IR-ML-380, CO-SD-MH-220, PRO-SD-1DL-100, CO-SD-MH-200, PRO-R25-SD-DL-100, CO-SD-MH-190, ENG-MT-SD-ML-A-100, MS-CS-SD SS, ENG-MS-SD-ML-A-110, ENG-MT-SD-ML-A-110, ENG-SH-SD-ML-A-110, CO-SD-MH-180, CO-SD-ML-130, PRO-R25-SD-DL-110, PRO-R25-SD-DL-130, PRO-SD-1DL-130, PRO-SD-1DL-120, ENG-MT-SD-CB-A-110, ENG-SH-SD-CB-A-110, ENG-MS-SD-CB-A-110, PRO-SW-1DL-110 SS, ENG-MT-SW-ML-A-100, ENG-SH-SW-ML-A-110, MS-CS-SW SS, ENG-MS-SW-ML-A-110, PRO-SW-1DL-100, ENG-MT-SW-ML-A-110, PRO-LV-DP-1DL-100, PRO-LV-DP-DL-100, CON-LV-DP-120, CON-LV-DP-190, CON-LV-DP-110, ENG-SH-MSN-A-120, ENG-SH-CTV-A-110, ENG-MS-CTV-A-110, ENG-MT-CTV-A-100, PRO-CTV-1DL-100, MS-CS-TE SS, CO-TE-MH-160, CO-TE-CTV-110, T/C-RD FF, MS-CF-MV, CO-MV-TF-230, CO-MV-TF-240, CO-MV-TF-250, CO-MV-TF-260 | -110d | 0d | Excavation for Trench size 40cm wide and 80cm deep (for 1 cable); Excavation for Trench Size 60cm wide and 80cm deep (for 2 cables); Excavation for Trench Size 90cm wide and 80cm deep (for 3 cables); Excavation for Trench Size 180cm wide and 80cm deep (for 6 cables); Excavation for Trench Size 210 cm wide and 80cm deep (for 7 cables); Excavation for Trench Size 240cm wide and 80cm deep (for 8 cables); Duct bank for (33) cables; Duct bank for (21) cables; Duct bank for (15) cables; HV Cable Road Crossing; physical units [1459.2 h] | TC |
|  | RD | **Road Works** |  | 2027-06-29 | 2027-07-12 |  |  |  |  |  |
| T/C-RD |  | Testing and Commissioning of Road Works | 12d | 2027-06-29 | 2027-07-12 | PRO-R25-RD-DL-170, PRO-RD-1DL-130, PRO-R25-RD-DL-100, PRO-RD-1DL-100, MS-MM-140, MS-MM-130, MS-CS-RD SS, ENG-SH-RD-A-100, ENG-SH-RD-A-110, ENG-MS-RD-A-30, ENG-MS-RD-A-20, ENG-MS-RD-A-10, ENG-MS-RD-A-40, CO-TE-MH-190, CO-TE-DW-160, CO-SL-CL-300, CO-SL-LP-380, CON-LV-HC-150, CON-LV-ML-150, CO-MV-ML-300, CO-IR-ML-180, CO-PW-FH-190, CO-PW-VC-250, CO-PW-ML-160, CO-TSE-ML-230, CO-SW-ML-160, CO-SW-MH-250, CO-SD-CB-200, CO-SD-ML-160, CO-SD-MH-260, CO-EW-210_R, CO-SL-LP-520, PRO-R25-RD-DL-110, PRO-RD-1DL-110, CO-EW-220, CO-SD-ML-190, CO-SD-MH-300, CO-SD-CB-230, CO-SW-ML-190, CO-SW-MH-300, CO-PW-ML-190, CO-PW-VC-280, CO-IR-ML-230, CO-TSE-ML-280, CO-MV-ML-330, CO-SL-LP-430, CO-SL-CL-330, CON-LV-HC-180, CON-LV-ML-180, CO-TE-DW-200, CO-PW-FH-220, CO-TE-MH-220, CON-LV-DP-180, CO-RD-PB-150 SS, CO-IR-TF-210, CO-TE-CTV-210, CO-EW-230, CO-SD-ML-220, CO-PW-ML-220, CO-PW-VC-310, CO-TSE-ML-330, CO-MV-ML-360, CO-SL-LP-480, CO-SL-CL-360, CON-LV-HC-210, CON-LV-ML-210, CO-TE-DW-240, CO-PW-FH-250, CO-TE-MH-250, CO-RD-PB-140, CO-IR-ML-380, CO-SD-MH-220, PRO-SD-1DL-100, CO-SD-MH-200, PRO-R25-SD-DL-100, CO-SD-MH-190, ENG-MT-SD-ML-A-100, MS-CS-SD SS, ENG-MS-SD-ML-A-110, ENG-MT-SD-ML-A-110, ENG-SH-SD-ML-A-110, CO-SD-MH-180, CO-SD-ML-130, PRO-R25-SD-DL-110, PRO-R25-SD-DL-130, PRO-SD-1DL-130, PRO-SD-1DL-120, ENG-MT-SD-CB-A-110, ENG-SH-SD-CB-A-110, ENG-MS-SD-CB-A-110, PRO-SW-1DL-110 SS, ENG-MT-SW-ML-A-100, ENG-SH-SW-ML-A-110, MS-CS-SW SS, ENG-MS-SW-ML-A-110, PRO-SW-1DL-100, ENG-MT-SW-ML-A-110, PRO-LV-DP-1DL-100, PRO-LV-DP-DL-100, CON-LV-DP-120, CON-LV-DP-190, CON-LV-DP-110, ENG-SH-MSN-A-120, ENG-SH-CTV-A-110, ENG-MS-CTV-A-110, ENG-MT-CTV-A-100, PRO-CTV-1DL-100, MS-CS-TE SS, CO-TE-MH-160, CO-TE-CTV-110, T/C-CTV FF, MS-CF-RD, MS-CF-RD SS, CO-RD-PV-160, CO-RD-PV-170, CO-RD-F-RM-180, CO-RD-F-TS-120, CON-RD-MR-150, CO-RD-PV-180, CO-RD-PV-190, CO-RD-F-RM-190, CO-RD-F-TS-130, CO-RD-PV-200, CO-RD-PV-210, CO-RD-F-RM-200, CO-RD-F-TS-140, CO-RD-PV-220, CO-RD-PV-230, CO-RD-F-RM-210, CO-RD-F-TS-150, CO-RD-PV-240, CO-RD-PV-250, CO-RD-F-RM-220, CO-RD-F-TS-160, CON-RD-MR-230, CO-RD-PV-260, CO-RD-PV-270, CO-RD-F-RM-230, CO-RD-F-TS-170, CON-RD-MR-250, CO-RD-PV-280, CO-RD-PV-290, CO-RD-F-RM-240, CO-RD-F-TS-180, CON-RD-MR-270, CO-RD-PV-300, CO-RD-PV-310, CO-RD-F-RM-250, CO-RD-F-TS-190, CON-RD-MR-290, CO-RD-PV-320, CO-RD-PV-330, CO-RD-F-RM-260, CO-RD-F-TS-200, CON-RD-MR-310 | -111d | 0d | Excavations (including Roads , Plots and Pond); Embankments to the Site and Roads (including Roads , Plots and Pond); Subgrade; Aggregate base course; Bituminous base course (Grading I - Class A), including Prime Coat (MC1); Bituminous concrete wearing course, (Grading I - Class A), including tack coat (RC2); Precast Concrete Curbstone 150X300X900 Type (K1-A); Precast Concrete Curbstone 100X200X500 Type (K4); Precast Concrete Curbstone 150X300X500 Type (K1-B); Precast Concrete Curbstone Type (K1-C); Flush Kerb Type (D); 60mm thick; 80mm thick; Retroreflective Thermoplastic White Traffic lines; Retroreflective Thermoplastic Yellow, Traffic lines; Traffic signs, ground mounted, Sheet Aluminum, (breakaway) Single post IPE, with all accessories; Precast Concrete Blister Warning Tactile Paver Brown Finish 300*300*60mm; physical units [1459.2 h] | TC |
|  | 1 | **Utility Buildings** |  | 2027-06-22 | 2027-07-19 |  |  |  |  |  |
| T/C-CTV |  | Testing and Commissioning of Guard Room and Boundary Fence | 16d | 2027-06-22 | 2027-07-10 | PRO-R25-RD-DL-110, PRO-RD-1DL-110, CO-EW-220, CO-SD-ML-190, CO-SD-MH-300, CO-SD-CB-230, CO-SW-ML-190, CO-SW-MH-300, CO-PW-ML-190, CO-PW-VC-280, CO-IR-ML-230, CO-TSE-ML-280, CO-MV-ML-330, CO-SL-LP-430, CO-SL-CL-330, ENG-MS-RD-A-20, ENG-MS-RD-A-30, ENG-MS-RD-A-40, PRO-R25-RD-DL-100, CON-LV-HC-180, CON-LV-ML-180, ENG-MS-RD-A-10, ENG-SH-RD-A-100, ENG-SH-RD-A-110, MS-CS-RD SS, PRO-RD-1DL-100, MS-MM-130, MS-MM-140, CO-TE-DW-200, CO-PW-FH-220, CO-TE-MH-220, CON-LV-DP-180, CO-RD-PB-150 SS, CO-IR-TF-210, CO-TE-CTV-210, CO-EW-230, CO-SD-ML-220, CO-PW-ML-220, CO-PW-VC-310, CO-TSE-ML-330, CO-MV-ML-360, CO-SL-LP-480, CO-SL-CL-360, CON-LV-HC-210, CON-LV-ML-210, CO-TE-DW-240, CO-PW-FH-250, CO-TE-MH-250, CO-RD-PB-140, CO-IR-ML-380, CO-SD-MH-220, PRO-SD-1DL-100, CO-SD-MH-200, PRO-R25-SD-DL-100, CO-SD-MH-190, ENG-MT-SD-ML-A-100, MS-CS-SD SS, ENG-MS-SD-ML-A-110, ENG-MT-SD-ML-A-110, ENG-SH-SD-ML-A-110, CO-SD-MH-180, CO-SD-ML-130, PRO-R25-SD-DL-110, PRO-R25-SD-DL-130, PRO-SD-1DL-130, PRO-SD-1DL-120, ENG-MT-SD-CB-A-110, ENG-SH-SD-CB-A-110, ENG-MS-SD-CB-A-110, PRO-SW-1DL-110 SS, ENG-MT-SW-ML-A-100, ENG-SH-SW-ML-A-110, MS-CS-SW SS, ENG-MS-SW-ML-A-110, PRO-SW-1DL-100, ENG-MT-SW-ML-A-110, PRO-LV-DP-1DL-100, PRO-LV-DP-DL-100, CON-LV-DP-120, CON-LV-DP-190, CON-LV-DP-110, ENG-SH-MSN-A-120, ENG-SH-CTV-A-110, ENG-MS-CTV-A-110, ENG-MT-CTV-A-100, PRO-CTV-1DL-100, MS-CS-TE SS, CO-TE-MH-160, CO-TE-CTV-110, A1240, A1100, CON-RD-MR-150, CON-RD-MR-230, CON-RD-MR-250, CON-RD-MR-270, CON-RD-MR-290, CON-RD-MR-310 | -109d | 0d | 100 mm thickness lean concrete under the foundation; Foundation; Slab on Grade; Walls; Beams; Columns; Slabs; Lightweight Concrete Roof insulation as per Architect's specification; Common brickwork. 300mm thick; vertical straight wall complete with accessories.; Insulated brickwork. with expanded polystyrene 200mm thick; vertical straight wall complete with accessories .; Common brickwork. 150mm thick; vertical straight wall complete with accessories.; Two Layers of Bituminous Coating; 20x20 Approved Polysulfide Joint Sealant; 2 perpendicular layers of cold bitumen coats; 2 layer of 4mm HDPE membrane, 2 perpendicular layers cold bitumen coats; 1 layer EPOXY Paint 300 micron; Membrane fully bonded to prime deck and upstand; Geotextile Filter membrane uv resistance; 85mm thick thermal insulation; 1.5mm thick epdm waterproofing membrane; CW01 - 1000 mm width x 2000 mm height; CW02 - 2000 mm width x 2000 mm height; D2 - 900 mm x 2200 mm height temper door; Supply and install 33mm thick Lexan cladding blue complete with necessary framings & accessories all as per manufacturer's & architectural drawing.; Supply and install 50mm thick random cut stone cladding complete with 600mm x 50mm thick coping, necessary framings, slotted anchor connection, steel tube framing, aluminum angles all necessary fittings & accessories as per manufacturer's detail & archite; Supply and install External plastering to walls and columns min. 15mm thick with cement mortar of specified grade including galvanized mesh, corner beads, angle beads, CE bonds to rough and smooth plaster complete the work as per drawing & specification.; Supply and install 2 coats of weatherproof paint at walls including one prime coat and two coats and putty to give smooth Surface as a base for paint including fiberglass tape to joints and all other accessories as per manufacturers approved specification; Supply and install 300*300mm terrazzo tiles with 150mm high skirting at perimeter with approved quality on 30 mm mortar including sand fill material as approved by the Client (For Roof); Supply and install 300*300mm glazed ceramic wall tiles on cement mortar and including rough and smooth plaster, galvanized mesh, corner beads, angle beads, CE bonds (For Toilets); Supply and install internal plastering and 2 coats of acrylic paint at walls including one coat of primer & two coats of putty to give smooth finish; Supply and install 600*600mm porcelain tiles with approved quality on 30 mm mortar including sand fill material as approved by the Client (for Security Area); Supply and install 12.5mm thk, gypsum board suspended ceiling including suspension system, paints as required specification and material as approved by the Client including frames supports, access openings and all other accessories to complete as shown in; Guard room coping 350mm; Guard room coping 450mm; Stone coping 500mm; Stone coping 525mm; Supply and install MODON Signage with Logo Type 1; Supply and install MODON Signage Type 2; Supply and install "Triangle Style" signage; Office Chairs; Office Tables; Guard Stand; Magnetic Control Access barrier, Automatic Vehicular Barriers to be installed on ground with magnetic access; Supply and install Hand Wash Basin with Water Tap, angle valve, P-trap connected to 50mm diameter sanitary pipe fittings chased to wall.; Supply and install paper towel dispenser, surface mounted, satin finish stainless steel as per approved sample including accessories.; Supply and install mirror, size 460*910mm as per approved sample including frames, backing and all accessories to complete.; Supply and install towel ring , surface mounted, satin finish stainless steel as per approved sample including accessories.; Kitchen sink with single bowl with hot/cold water mixer.; Supply and install Base mounted flush tank water Western water closet system with lid connected to 110mm soil pipe and sanitary tee complete with jointing, angles and bent below floor slab to drainage system; Gate Valves; Slow Closing Valve; 1 meter length 10mm diameter Flexible Hose with insulated handle complete with fork support, index push, vacuum breaker; 50mm diameter; 75mm diameter; 80mm diameter; 100mm diameter; 110mm diameter; 13mm diameter; 15mm diameter; 20mm diameter; 25mm diameter; 32mm diameter; Isolation Valve Size 20; Isolation Valve Size 25; Isolation Valve Size 32; Isolation Valve Size 50; 20 mm diameter spray head for cold water supply; Supply and install Electric Water Heater set with connection; Water meter complete with accessories.; Roof drain; Vent on a roof to exhaust air; 300 X 300 mm Gully trap; inspection chamber, size 800x900x1000; 900mm x 800mm Pressure break chamber; Floor cleanout, size 75 mm diameter; Floor cleanout, size 110 mm diameter; GRP water tanks capacity of each 1000 liter complete with all fittings, all valves and concrete pad; Mini split actual capacity 2 Ton; Supply, fabricate, install and testing factory fabricated metal ducts with flanges complete with supports, vanes, dampers, links, levers and quadrants etc. as per specifications. It shall include all materials of the duct and supporting arrangement comple; Supplying, installation testing & commissioning of external insulation on ducts; Supply, fix, testing and commissioning of exhaust air/fresh air louvers of powder coated extruded aluminium construction.; Providing, fixing, testing and commissioning of powder coated extruded aluminum sections grills and diffusers with dampers.; Supply, Installation & Testing of 2 hours Fire rated system for closing the openings between rooms with help of Rock wool, G.I Sheet and Hilti or equivalent Sealants( Qty measured will be the size of opening). Item Properties shall be quoted as per techni; 4.5 KG CO2 Type Fire Extinguishers; 6 KG ABC Type Fire Extinguishers; Junction Box for lighting fixture; Trench excavation to receive 2 nos 50mm diameter PVC Conduit, sand bedding and embedded with sand encasement and backfilling with excavated material complete with warning tape at approved depth; Supply, Install, fixings, testing and commissioning 80W LED Projector waterproof DJ effect light including customized project image features complete with mounting system specification to Engineer's approval.; Earth Pit; Grounding rod 20mmX3m; Grounding rod with Pit 20mmX3m; Earthing Bar; 120mm2 Tinned copper wire; Guard Room 1; Guard Room 2; Guard Room 3; 30A, 2P AC Disconnect Switch; 20A Duplex Receptacle Floor Mounted; Twin Socket outlet; Twin Socket outlet, Weather Proof; Single gang Lighting switch; 36W LED linear Pendant lighting; 36W LED Emergency linear Pendant lighting; 13W recess mounted LED down light fitting; 13W recess emergency mounted LED down light fitting with 1.5 Hr Battery; 10.4W LED Exit light with 1.5 Hr Battery; 4mm2 Cu./FRLSZH Cable; 6mm2 Cu./FRLSZH Cable; IR Intrusion Detection System Quad Beams (Tx & Rx) (SL-350 QDM); Control cable; CAT6A cable; Field Equipment Cabinet enclosed outdoor complete with precast concrete footing, suitable for parameter security and weather proof to the local enviroment. Not less than IP66 and IK rating.; Supply and install 800mm x 800mm x 800mm height concrete handhole with bituminous paint all around, 690mm x 690mm handhold cover and sump cover.; including pit excavation; 800mm depth minimum Trench excavation to receive 3 nos 50mm diameter PVC Conduit with spacer, sand bedding and embedded with sand encasement and backfill with excavated material well compacted complete with warning tape; Hot dipped galvanized cable conduits for CAT6A cable and Control Cables embedded to wall; 8 Port Industrial PoE Switch 10/100BaseT (0 deg to +70 deg. Celsius); 06C Optical Fiber SM; 48C Optical Fiber SM; 48 Core Splice Closure; Boom Barrier at Security Guard Room; Pedestrian turnstile at Security Guard Room; Access Control Unit; Access Card Reader; Magnetic Lock; Break Glass; Exit Push button; Door Sensor; Biometrics Reader; Pole/Bollard mounted IP( PoE), Automatic Number Plate Recognition (ANPR, camera, 5MP,IP 66, IR illumination, 3-8mm varifocal, auto iris lens type price include the Bollard/pole); 12U rack dimension (W x H x L) 600 x 625 x 600 mm; 4C-16mm2 CU/XLPE/PVC direct buried armored cable; 4C-10mm2 CU/XLPE/PVC direct buried armored cable; 16mm2 CU/PVC wire; 10mm2 CU/PVC wire; 400V, 3PH, 60Hz lighting control panel (LCP-02); 38W, 230V, 1PH, 60Hz fence, led linear uplight lighting, IP66; Fire Alarm Control panel with fire alarm zoning with Mimic panel with fire alarm zoning; Main Fire Alarm Control panel with fire alarm zoning with Mimic panel with fire alarm zoning; Supply and installation of the addressable manual call point with operation safety glass breaking and pushbutton; Supply and installation of the photoelectric heat & smoke detector with base; Sounder With Beacon; Addressable Control module for Sounders; Addressable Control module for HVAC System; Addressable Monitor module for HVAC System; 2C x 1.5 Sqm FR Rated Armored - Cable For Loop Wiring; DACT (Auto - Dailer) for 24x7 Civil Defence; Transmission Communication cable - Fiber Optics 12Core; Transmission Communication cable - Ethernet Cable; Supply, install to site and installation of power supply system for fire alarm control panel; Supply, install to site and installation of power cable; Fire Fighter’s Telephone Centre; Fireman’s Telephone Jack; Voice Command Center; physical units [1945.6 h] | TC |
| T/C-CTV20 |  | Testing and Commissioning of Softscape And Planting | 16d | 2027-06-22 | 2027-07-10 | T/C-CTV FF, CO-LS-PL-160, CO-LS-SF-170 | -101d | 15d | Neem Tree, T01 Tree; Cassia Glauca Tree, T02 Tree; Ponciana Tree, T03 Tree; Dodonaea Viscosa, S01 Shrubs 400-500mm, 4plant/m2; Vitex Angus-Cactus, S02 Shrubs 400-500mm, 5plant/m2; Pennisetum Rubrum , S03 Shrubs 400-500mm, 5plant/m2; sesuvium portulacastrum green carpet, GC01 Ground Cover; Catharanthus Roseus 150-200mm, GC02 Ground Cover; Seating Bench; Riyadh Stone Boulders 450mm thick; Gravel Mulch 150mm Beige; Gravel Mulch 150mm White; Gravel Ponds Bed - MARL MIX 500-600mm; Trash/ Recycle Bins; physical units [1945.6 h] | TC |
| T/C-CTV10 |  | Testing and Commissioning of Utility Buildings | 16d | 2027-07-01 | 2027-07-19 | PRO-R25-RD-DL-110, PRO-RD-1DL-110, CO-EW-220, CO-SD-ML-190, CO-SD-MH-300, CO-SD-CB-230, CO-SW-ML-190, CO-SW-MH-300, CO-PW-ML-190, CO-PW-VC-280, CO-IR-ML-230, CO-TSE-ML-280, CO-MV-ML-330, CO-SL-LP-430, CO-SL-CL-330, ENG-MS-RD-A-20, ENG-MS-RD-A-30, ENG-MS-RD-A-40, PRO-R25-RD-DL-100, CON-LV-HC-180, CON-LV-ML-180, ENG-MS-RD-A-10, ENG-SH-RD-A-100, ENG-SH-RD-A-110, MS-CS-RD SS, PRO-RD-1DL-100, MS-MM-130, MS-MM-140, CO-TE-DW-200, CO-PW-FH-220, CO-TE-MH-220, CON-LV-DP-180, CO-RD-PB-150 SS, CO-IR-TF-210, CO-TE-CTV-210, CO-EW-230, CO-SD-ML-220, CO-PW-ML-220, CO-PW-VC-310, CO-TSE-ML-330, CO-MV-ML-360, CO-SL-LP-480, CO-SL-CL-360, CON-LV-HC-210, CON-LV-ML-210, CO-TE-DW-240, CO-PW-FH-250, CO-TE-MH-250, CO-RD-PB-140, CO-IR-ML-380, CO-SD-MH-220, PRO-SD-1DL-100, CO-SD-MH-200, PRO-R25-SD-DL-100, CO-SD-MH-190, ENG-MT-SD-ML-A-100, MS-CS-SD SS, ENG-MS-SD-ML-A-110, ENG-MT-SD-ML-A-110, ENG-SH-SD-ML-A-110, CO-SD-MH-180, CO-SD-ML-130, PRO-R25-SD-DL-110, PRO-R25-SD-DL-130, PRO-SD-1DL-130, PRO-SD-1DL-120, ENG-MT-SD-CB-A-110, ENG-SH-SD-CB-A-110, ENG-MS-SD-CB-A-110, PRO-SW-1DL-110 SS, ENG-MT-SW-ML-A-100, ENG-SH-SW-ML-A-110, MS-CS-SW SS, ENG-MS-SW-ML-A-110, PRO-SW-1DL-100, ENG-MT-SW-ML-A-110, PRO-LV-DP-1DL-100, PRO-LV-DP-DL-100, CON-LV-DP-120, CON-LV-DP-190, CON-LV-DP-110, ENG-SH-MSN-A-120, ENG-SH-CTV-A-110, ENG-MS-CTV-A-110, ENG-MT-CTV-A-100, PRO-CTV-1DL-100, MS-CS-TE SS, PRO-SPS-LL-MSI-10, CO-UB-PWT-170, CO-UB-PS-320, PRO-TSE-LL-MSI-30, CO-UB-IRT-210, CO-TE-MH-160, CO-TE-CTV-110, T/C-CTV FF, CO-SU-FE-N-EL-310, CO-UB-PS-390 | -109d | 0d | 100 mm thickness lean concrete under the foundation; Foundation; Grade Beams; Slab on grade; Walls; Beams; Slabs; Lightweight Concrete Roof insulation as per Architect's specification; Hollow Concrete masonry unit, 100 mm thick wall for internal block; Hollow Concrete masonry unit, 150 mm thick wall for internal block; Insulated brickwork. with expanded polystyrene 200mm thick for External block; Hollow Concrete masonry unit, 300 mm thick wall for External block; 2 perpendicular layers of cold bitumen coats; 2 layer of 4mm HDPE membrane, 2 perpendicular layers cold bitumen coats; 1 layer EPOXY Paint 300 micron; Membrane fully bonded to prime deck and upstand; Geotextile Filter membrane uv resistance; 85mm thick thermal insulation; 1.5mm thick epdm waterproofing membrane; D1 - 1100 mm width x 2200 mm height; D2 - 1070 mm width x 2225 mm height; D3 - 1200 mm width x 3000 mm height; D4 - 1800 mm width x 3000 mm height; Roller Shuter - 3000mm width x 4000mm height; D1' 1900mm width x 2950mm height; D2' 1200mm width x 2150mm height; D3' 800mm width x 2050mm height; D4' 1700mm width x 2050mm height; 1500 mm width x 1200 mm high (W01); 1200 mm width x 1200 mm high (W02); 1000 mm width x 2400 mm high (L1); Supply and install External plastering to walls and columns min. 15mm thick with cement mortar of specified grade including galvanized mesh, corner beads, angle beads, CE bonds to rough and smooth plaster complete the work as per drawing & specification.; Supply and install 2 coats of weatherproof paint at walls including one prime coat and two coats and putty to give smooth Surface as a base for paint including fiberglass tape to joints and all other accessories as per manufacturers approved specification; Supply and install internal plastering to walls and columns min. 15mm thick with cement mortar of specified grade including galvanized mesh, corner beads, angle beads, CE bonds to rough and smooth plaster complete the work as per drawing & specification.; Supply and install 2 coats of epoxy paint at walls including one prime coat and two coats and putty to give smooth Surface as a base for paint including fiberglass tape to joints and all other accessories as per manufacturers approved specification; Supply and install 300*300mm glazed ceramic wall tiles on cement mortar and including rough and smooth plaster, galvanized mesh, corner beads, angle beads, CE bonds; Acid Proof Tiles; Supply and install 600*600mm porcelain tiles with approved quality on 30 mm mortar including sand fill material as approved by the Client; Supply and install 12.5mm thk, gypsum board suspended ceiling including suspension system, paints as required specification and material as approved by the Client including frames supports, access openings and all other accessories to complete as shown in; 4.5 KG CO2 Type Fire Extinguishers; 6 KG ABC Type Fire Extinguishers; 15 mm dia.; 25 mm dia.; 32 mm dia.; 40 mm dia.; 80 mm dia.; 200 mm dia.; 250 mm dia.; Supply and installation of western water closet, flush tank type, heavy duty, one piece SASO certified, approval of client, dimesion not less than 40 cm width, 68 cm length including all other accessories as per drawings and specification; Supply and installation of urinal, heavy duty, one piece SASO certified, approval of client, including all other accessories as per drawings and specification; Supply and installation of Bib tap with Perenial Hose (BPH) with stainless steel flexible hose and cast brass chromeplated hand including all other accessories to complete as per drawing and specification.; Supply, installation, testing and commissioning of Lavatory / wash basin with counter for toilets, built in soap dispenser, mixer, single lever arm including all accessories as per drawings and specification and to the approval of the client; Provide and install paper towel dispenser, surface mounted, satin finish stainless steel as per approved sample including accessories.; Provide and install mirror as per approved sample including frames, backing and all accessories to complete.; Provide and install towel ring, surface mounted, satin finish stainless steel as per approved sample including accessories.; Hose Bib; Valve Chamber; Retarding Chamber; Inspection Chamber; Neutralization pit 1000x1000mm; 25mm diameter; 32mm diameter; 40mm diameter; 50mm diameter; 75mm diameter; 80mm diameter; 100mm diameter; 110mm diameter; 15mm diameter; 20mm diameter; 150mm diameter; 200mm diameter; 250mm diameter; 13mm diameter; Gully Trap; Floor drain 75mm; Floor cleanout 110mm; Roof drain; 20 mm; 25 mm; 32 mm; 40 mm; 50 mm; 100 mm; 150 mm; 200 mm; 250 mm; Altitude control valve assembly, size 200 mm; GRP water tanks capacity of each 1000 liter complete with all fittings, all valves and concrete pad; Water Heater 30ltr; Supply, install, connection, testing and commssionigs horizontal bladder type pressure tank with capacity 1500 liter according to manufacturer's detail and specification - PS-PT-1; Supply, install, connection, testing and commssionigs horizontal bladder type pressure tank with capacity 300 liter according to manufacturer's detail and specification - PS-PT-2; Chemical DosingTank (CDT) 6000 liters capacity polytheylene tank With pump assembly.; Actual capacity 1.0 Ton; Actual capacity 1.5 Ton; Actual capacity 2.0 Ton; Air Flow 280 l/s @ 150 pa; Air Flow 3200 l/s @ 100 pa; Air Flow 110 l/s @ 50 pa; Air Flow 70 l/s @ 50 pa; Air Flow 35 l/s @ 35 pa; Air Flow 105 l/s @ 50 pa; Air Flow 180 l/s @ 0.01 pa; Supply and install flexible duct with insulation; size 8 inch dia.; Supply and install flexible duct with insulation; size 10 inch dia.; Package Unit 57.4 kW "thermal"; Variable Air Volume (VAV 01); Variable Air Volume (VAV 02); Variable Air Volume (VAV 03); Variable Air Volume (VAV 04); Variable Air Volume (VAV 05); Variable Air Volume (VAV 06); Galvanized sheet metal ducts; Supply Liner Slot diffuser 3 slots 1 inch; Return Liner Slot diffuser 3 slots 1 inch; Exhaust Grill 150mm x 150mm; Exhast Air fan 515 l/s @ 150 pa; Exhast Air fan 3200 l/s @ 100 pa; Sand trap louver 2400mm x 1000mm; Sound attenuator size 1050 x 650 x 1000 m; Fire suppression system FM200 57 kg fill capacity consists of 2 cylinders, duty + standby, complete with all required mechanical, electrical , and control items to install, test, and operate the system.; Fire suppression system NOVEC 1230 134.1 kg fill capacity consists of 2 cylinders, duty + standby, complete with all required mechanical, electrical , and control items to install, test, and operate the system.; Fire suppression system NOVEC 1230 29.2 kg fill capacity consists of 2 cylinders, duty + standby, complete with all required mechanical, electrical , and control items to install, test, and operate the system.; Fire suppression system NOVEC 1230 53.5 kg fill capacity consists of 2 cylinders, duty + standby, complete with all required mechanical, electrical , and control items to install, test, and operate the system.; Fire suppression system NOVEC 1230 82.3 kg fill capacity consists of 2 cylinders, duty + standby, complete with all required mechanical, electrical , and control items to install, test, and operate the system.; Fire suppression system NOVEC 1230 42.5 kg fill capacity consists of 2 cylinders, duty + standby, complete with all required mechanical, electrical , and control items to install, test, and operate the system.; Supply and install steel ladder with cage at pump room for as per drawings and specification.; Overhead Travelling Crane; lifting capacity 1.50 ton manual type all to manufacturer's detail and specifications. - PS-OC-1; Hot dipped Galvanized steel Trench Grating; Hot dipped Galvanized steel Channel Cover Plate; Steel Frame and Cover 1200 x 1200; Vent Cowl (Standard Size); Steel Handrail of 1.2m height; 30W LED linear Pendant lighting; 30W LED Emergency linear Pendant lighting; 47W LED linear Pendant lighting; 47W LED Emergency linear Pendant lighting; 13W recess mounted LED down light fitting; 13W recess emergency mounted LED down light fitting with 1.5 Hr Battery; 10.4W LED Exit light with 1.5 Hr Battery; Distribution board (MDB-PR-01); Distribution board (LPDB-PR-01); Distribution board (MDB-CB-01); Distribution board (LPDB-CR-01); 13A,1? 230V Twin socket outlet with switch; 13A,1? 230V Industrial socket outlet with switch; 13A, Twin Socket outlet, Weather Proof; 400A, 3P Disconnect switch; 30A, 2P AC Disconnect Switch; 30A, 3P AC Disconnect Switch; 60A, 3P AC Disconnect Switch; 20A Duplex Receptacle Floor Mounted; Single gang Lighting switch; Double gang Lighting switch; 2way Single gang Lighting switch; Cable Tray 300 mm X 100 mm; 4CX6 Cu. XLPE FRLSZH Cable; 4CX10 Cu. XLPE FRLSZH Cable; 4CX16 Cu. XLPE FRLSZH Cable; 4CX25 Cu. XLPE FRLSZH Cable; 4CX35 Cu. XLPE FRLSZH Cable; 4CX185 Cu. XLPE FRLSZH Cable; 120mm2 Tinned copper wire; Grounding rod 20mmX3m; Grounding rod with Pit 20mmX3m; Earthing Bar; Cu earth strip 25X4 mm; 1.5m Air terminal; 4mm2 Cu./FRLSZH Cable; 6mm2 Cu./FRLSZH Cable; 10mm2 Cu./FRLSZH Cable; 16mm2 Cu./FRLSZH Cable; 95mm2 Cu./FRLSZH Cable; 120mm2 Cu./FRLSZH Cable; 30KVA, 400V, 3PH, 60Hz UPS; CB-UPS-01 panel; Supply, install and connection of a SCADA server cum workstation complete with network rack, network switch, sensors, printer, armoured cables with cable tray & conduits, level transmitter, liquid flow meter, quality sensor (COD,BOD,pH), pressure transmit; Fire Alarm Control panel with fire alarm zoning with Mimic panel with fire alarm zoning; Supply, install to site and installation of the Aspirating Smoke Detector complete with accessories and pipes; Supply, install to site and installation of the addressable manual call point with operation safety glass breaking and pushbutton; Supply, install to site and installation of the photoelectric smoke detector with base; Supply, install to site and installation of the heat detector with base; Supply, install to site and installation of multi criteria sensors with base; Supply, install to site and installation of Hydrogen detector; Supply, install to site and installation of Duct detector; Sounder With Beacon; Remote LED Indicator; Single Channel Interface Module; Addressable Control module for Sounders; Addressable relay module for interface; Addressable monitor module for interface; Supply, install to site and installation Fire loop cable; Supply, install to site and installation of power cable; Fire Fighter’s Telephone Centre; Fireman’s Telephone Jack; Voice Command Center; DACT (Auto - Dailer) for 24x7 Civil Defence; Transmission Communication cable - Fiber Optics; Transmission Communication cable - Ethernet Cable; Supply, install to site and installation of power supply system for fire alarm control panel; Pump Set for Irrigation Supply (IRR01 / IRR02); Pump Set for Drainage System; Pump Set for SW Force Main (1W+1S); Pump Set for FF Supply (FP01.FP02); Pump Set for Domestic Supply (BP01 / BP02); acoustical tiles suspended ceiling 600x600mm concealed metal; physical units [1945.6 h] | TC |
|  | 1 | **Handing over and close out** |  | 2027-06-29 | 2027-07-27 |  |  |  |  |  |
|  | 2 | **As-Built** |  | 2027-06-29 | 2027-07-21 |  |  |  |  |  |
| HO-100 |  | Submission As-Built Drawing For Sewage Network | 10d | 2027-06-29 | 2027-07-10 | MS-MO-50, T/C-SW SS | -101d | 15d |  | HO |
| HO-130 |  | Submission As-Built Drawing For Pond | 10d | 2027-06-29 | 2027-07-10 | MS-MO-20, MS-MO-50, T/C-DPO SS | -101d | 15d |  | HO |
| HO-140 |  | Submission As-Built Drawing For Roads Network | 10d | 2027-06-29 | 2027-07-10 | T/C-RD SS | -101d | 15d |  | HO |
| HO-150 |  | Submission As-Built Drawing For Street Lighting Network | 10d | 2027-06-29 | 2027-07-10 | T/C-SL SS | -101d | 15d |  | HO |
| HO-160 |  | Submission As-Built Drawing For Telecom and Light Current Networks | 10d | 2027-06-29 | 2027-07-10 | T/C-TE SS | -101d | 15d |  | HO |
| HO-180 |  | Submission As-Built Drawing For Irrigation Network | 10d | 2027-06-29 | 2027-07-10 | T/C-IR SS | -101d | 15d |  | HO |
| HO-200 |  | Submission As-Built Drawing For Storm Network | 10d | 2027-07-06 | 2027-07-17 | T/C-SD SS | -107d | 9d |  | HO |
| HO-170 |  | Submission As-Built Drawing For Medium Voltage Network | 7d | 2027-07-13 | 2027-07-20 | T/C-MV SS, TC-LV-100 | -110d | 6d |  | HO |
| HO-190 |  | As-Built Drawing For Potable Water Network | 7d | 2027-07-13 | 2027-07-20 | T/C-PW SS, T/C-TSE-10 | -110d | 6d |  | HO |
| HO-210 |  | Submission As-Built Drawing For Utility Buildings | 8d | 2027-07-13 | 2027-07-21 | CO-UB-CR-360, CO-SU-FE-N-EL-270, HO-120 FF, T/C-CTV10 FF, T/C-CTV | -111d | 5d |  | HO |

| ID | WBS | Activity | Duration | Start | Finish | Predecessors | Total float | Free float | 01- Network |
| --- | --- | --- | --- | --- | --- | --- | --- | --- | --- |
|  | 1 | **De-Mobilization Works** |  | 2027-07-01 | 2027-07-21 |  |  |  |  |
| HO-230 |  | Remove Temporary Car Shades | 10d | 2027-07-01 | 2027-07-12 | T/C-RD SS, T/C-RD FF | -103d | 13d | HO |
| HO-220 |  | Removing Portable Caravan | 7d | 2027-07-05 | 2027-07-12 | T/C-RD SS, T/C-RD FF | -111d | 0d | HO |
| HO-120 |  | Remove material stock & Storage area | 8d | 2027-07-13 | 2027-07-21 | HO-220, T/C-RD SS, T/C-RD FF | -111d | 0d | HO |
|  | 3 | **Handing Over** |  | 2027-07-04 | 2027-07-27 |  |  |  |  |
| HO-240 |  | Final Walkthrough and Inspection | 8d | 2027-07-04 | 2027-07-12 | T/C-RD SS, T/C-RD FF | -103d | 13d | HO |
| HO-250 |  | Review B.O.Q Qty. to ensure compliance with the actual status | 8d | 2027-07-04 | 2027-07-12 | T/C-RD SS, T/C-RD FF | -103d | 13d | HO |
| HO-260 |  | Review FIR Approval to ensure compliance with the actual status | 8d | 2027-07-04 | 2027-07-12 | T/C-RD SS, T/C-RD FF | -103d | 13d | HO |
| HO-270 |  | Review the sample drawing to ensure compliance with the actual status | 8d | 2027-07-04 | 2027-07-12 | T/C-RD SS, T/C-RD FF | -111d | 0d | HO |
| HO-280 |  | Punch List Completion | 8d | 2027-07-13 | 2027-07-21 | HO-270, T/C-RD SS, T/C-RD FF | -111d | 5d | HO |
| HO-110 |  | Final Testing Work | 7d | 2027-07-20 | 2027-07-27 | T/C-SD, T/C-RD SS, T/C-RD FF | -116d | 0d | HO |

## Activity codes

| Code | Value | Meaning |
| --- | --- | --- |
| 01- Network | CTV | CCTV |
| 01- Network | FE | FENCE |
| 01- Network | FU | FURNISHING |
| 01- Network | HO | Handing Over |
| 01- Network | IR | Irrigation Network |
| 01- Network | LLI | LONG LEAD ITEMS |
| 01- Network | LV | Low Voltage Network |
| 01- Network | MA | MATERIAL APPROVAL |
| 01- Network | MV | Medium Voltage Network |
| 01- Network | NLI | NON LONG LEAD ITEMS |
| 01- Network | PW | Potable Water Network |
| 01- Network | RD | Roads Network |
| 01- Network | SD | Storm Drainage Network |
| 01- Network | SL | Street Lighting Network |
| 01- Network | SOF | SOFT SCAPE |
| 01- Network | SW | Sewage Network |
| 01- Network | TC | Testing and Comissioning |
| 01- Network | TE | Telecom Network |
| 01- Network | UB | UTILITY BUILDING |
| 12 FENCE | NORTH | NORTHERN FENCE |
| 13 BUILDINGS | LIFT | LIFT STATION |
| 13 BUILDINGS | LS | LANDSCAPE |
| 13 BUILDINGS | PUMP | PUMP STATION |
