# Development of the Technology City in Dammam-BL00

Schedule from Primavera P6, 2025-12-23 to 2027-02-22, data date 2025-12-23, costs in SR.
Must finish by 2027-02-23

## Calendars

- MODON - ACTIVITY: Mon-Thu 08:00-12:00, 13:00-17:00; Fri off; Sat-Sun 08:00-12:00, 13:00-17:00. Exceptions (off unless hours are given): 2026-02-18 to 2026-02-19 06:00-12:00, 2026-02-21 06:00-12:00, 2026-02-22, 2026-02-23 to 2026-02-26 06:00-12:00, 2026-02-28 to 2026-03-05 06:00-12:00, 2026-03-07 to 2026-03-12 06:00-12:00, 2026-03-14 to 2026-03-19 06:00-12:00, 2026-03-21 to 2026-03-23, 2026-05-26 to 2026-05-28, 2026-05-30, 2026-06-15 to 2026-06-18 06:00-12:00, 15:00-17:00, 2026-06-20 to 2026-06-25 06:00-12:00, 15:00-17:00, 2026-06-27 to 2026-07-02 06:00-12:00, 15:00-17:00, 2026-07-04 to 2026-07-09 06:00-12:00, 15:00-17:00, 2026-07-11 to 2026-07-16 06:00-12:00, 15:00-17:00, 2026-07-18 to 2026-07-23 06:00-12:00, 15:00-17:00, 2026-07-25 to 2026-07-30 06:00-12:00, 15:00-17:00, 2026-08-01 to 2026-08-06 06:00-12:00, 15:00-17:00, 2026-08-08 to 2026-08-13 06:00-12:00, 15:00-17:00, 2026-08-15 to 2026-08-20 06:00-12:00, 15:00-17:00, 2026-08-22 to 2026-08-27 06:00-12:00, 15:00-17:00, 2026-08-29 to 2026-09-03 06:00-12:00, 15:00-17:00, 2026-09-05 to 2026-09-10 06:00-12:00, 15:00-17:00, 2026-09-12 to 2026-09-15 06:00-12:00, 15:00-17:00, 2026-09-23, 2027-02-08 to 2027-02-11 06:00-12:00, 2027-02-13 to 2027-02-18 06:00-12:00, 2027-02-20 to 2027-02-21 06:00-12:00, 2027-02-22 08:00-16:00.

## Resources

| Resource | Group | Unit | Rate | Notes |
| --- | --- | --- | --- | --- |
| MH depth 1.5 - 2.5m | material |  | 355.05 |  |
| MH depth 2.5 - 3.5m | material |  | 508.2 |  |
| MH depth > 3.50m | material |  |  |  |
| MH depth 2.5 -3.5m | material |  | 656.1 |  |
| MH depth > 3.50m | material |  | 771.36 |  |
| Depth Between 1.50m to 2.50m | material |  | 13.83 |  |
| Depth Between 2.50m to 3.50m | material |  | 17.94 |  |
| Depth > 3.50m | material |  | 18.78 |  |
| Depth Between 2.50m to 3.50m | material |  | 20.7 |  |
| Depth > 3.50m | material |  | 21.75 |  |
| Depth Between 0m to 1.50m | material |  | 18.99 |  |
| Depth Between 1.50m to 2.50m | material |  | 20.1 |  |
| Depth Between 2.50m to 3.50m | material |  | 23.4 |  |
| Depth > 3.50m | material |  | 24.27 |  |
| Depth Between 2.50m to 3.50m | material |  | 26.79 |  |
| Depth > 3.50m | material |  | 27.78 |  |
| Depth Between 3.50m to 4.50m | material |  | 31.14 |  |
| Depth > 4.50m | material |  | 32.22 |  |
| Depth Between 3.50m to 4.50m | material |  | 34.32 |  |
| Depth > 4.50m | material |  | 36.24 |  |
| Depth Between 0m to 1.50m | material |  | 13.02 |  |
| Depth Between 1.50m to 2.50m | material |  | 14.85 |  |
| Depth > 2.50m | material |  | 16.68 |  |
| Depth Between 0m to 1.50m | material |  | 7.29 |  |
| Depth Between 1.50m to 2.50m | material |  | 7.8 |  |
| Depth > 2.50m | material |  | 11.94 |  |
| Depth Between 0m to 1.50m | material |  | 8.34 |  |
| Depth Between 1.50m to 2.50m | material |  | 8.94 |  |
| Depth Between 2.50m to 3.50m | material |  | 13.05 |  |
| Depth > 3.50m | material |  | 13.83 |  |
| HDPE Force Main (PE 100, SDR 11, PN 16 bar) DN 160 mm diameter, in trenches depth: 0- 1.5m | material |  | 9.12 |  |
| HDPE Force Main (PE 100, SDR 11, PN 16 bar) DN 160 mm diameter, in trenches depth: 1.51- 2.5m | material |  | 10.02 |  |
| Depth: 0 - 1.5m | material |  | 309.03 |  |
| Depth: 1.51 - 2.5m | material |  | 35.52 |  |
| Depth: 2.51 - 3.5m | material |  | 508.2 |  |
| Depth > 3.50m | material |  | 601.62 |  |
| Depth Between 0m to 1.50m | material |  | 2.16 |  |
| Depth Between 1.50m to 2.50m | material |  | 2.79 |  |
| Depth > 2.50m | material |  | 3.39 |  |
| Depth Between 0m to 1.50m | material |  | 3.21 |  |
| Depth Between 1.50m to 2.50m | material |  | 3.78 |  |
| Depth > 2.50m | material |  | 4.41 |  |
| Depth Between 0m to 1.50m | material |  | 4.41 |  |
| Depth Between 1.50m to 2.50m | material |  | 5.01 |  |
| Depth > 2.50m | material |  | 5.58 |  |
| Depth Between 0m to 1.50m | material |  | 8.25 |  |
| Depth Between 1.50m to 2.50m | material |  | 9 |  |
| Depth > 2.50m | material |  | 9.63 |  |
| pipe line O.D 32 mm PN 10, in depth 0 to 1.5 m | material |  | 0.9 |  |
| pipe line O.D 40 mm PN 10, in depth 0 to 1.5 m | material |  | 1.26 |  |
| pipe line O.D 50 mm PN 10, in depth 0 to 1.5 m | material |  | 1.8 |  |
| Gate valves Dia 50 mm | material |  | 54 |  |
| Gate valves Dia 100 mm | material |  | 64.8 |  |
| Gate valves Dia 150 mm | material |  | 86.4 |  |
| Gate valves Dia 250 mm | material |  | 151.2 |  |
| Air valves with Dia 50 mm | material |  | 288 |  |
| Washout valve Dia 100 mm | material |  | 288 |  |
| 3-outlet fire hydrant (2 x 2.5 inch and 1 x 4.5 inch) in the form of a separate dry vacuum cylinder, complete according to drawings. | material |  | 342 |  |
| Wash out chamber (2500x 2500mm) | material |  | 720 |  |
| Air valve chamber (1000x 1000 mm) | material |  | 360 |  |
| Flow meter chamber (1500x 2500 mm) | material |  | 720 |  |
| Flow meter dia 100 mm | material |  | 918 |  |
| Gate valve 50 mm PN16 | material |  | 43.2 |  |
| Direct Burried Gate valve 40 mm PN16 | material |  | 43.2 |  |
| Pressure–compensating bubblers 110 Lit/Hr | material |  | 0.51 |  |
| Flushing Bronze gate valve dia 1.5" inside PVC box | material |  | 54 |  |
| Air release valve 1.5" inside PVC box | material |  | 54 |  |
| Extra flexible pressure compensating on surface inline dripline`s, O.D. is 16.1 mm | material |  | 0.45 |  |
| Electrical Solenoid Valve ( 1.5") inside PVC box | material |  | 43.2 |  |
| Electrical Solenoid Valve ( 2") inside PVC box | material |  | 54 |  |
| Quick coupling valve 1" inside a round valve box 10" size with a manual gate valve, hose swivel and key with all accessories | material |  | 90 |  |
| Advanced Irrigation controller subject to client approval, can connect with Centarl Control system | material |  | 900 |  |
| Decoder cables 12 AWG between valves and controllers, The cables shall be pulled through 32Ø UPVC conduit | material |  | 0.36 |  |
| Preparing the irrigation program for the entire system and providing technical services for monitoring and controlling the central irrigation systems | material |  | 1080 |  |
| Excavation for Trench size 40cm wide and 80cm deep (for 1 cable) | material |  | 1.23 |  |
| Excavation for Trench Size 60cm wide and 80cm deep (for 2 cables) | material |  | 1.23 |  |
| Excavation for Trench Size 90cm wide and 80cm deep (for 3 cables) | material |  | 1.23 |  |
| Excavation for Trench Size 180cm wide and 80cm deep (for 6 cables) | material |  | 1.23 |  |
| Excavation for Trench Size 210 cm wide and 80cm deep (for 7 cables) | material |  | 1.23 |  |
| Excavation for Trench Size 240cm wide and 80cm deep (for 8 cables) | material |  | 1.23 |  |
| Duct bank for (33) cables | material |  | 64.89 |  |
| Duct bank for (21) cables | material |  | 43.14 |  |
| Duct bank for (15) cables | material |  | 32.31 |  |
| HV Cable Road Crossing | material |  | 18.69 |  |
| Road crossing ducts, 2 ways (2 x 150mm HDPE) | material |  | 7.38 |  |
| Road crossing ducts, 2 ways (2 x 110mm UPVC) | material |  | 4.62 |  |
| Road crossing ducts, 3 ways (3 x 110mm UPVC) | material |  | 6.6 |  |
| 4C-300mm2 CU/XLPE / PVC ARMORED CABLE | material |  | 27.42 |  |
| 4C-240mm2 CU/XLPE / PVC ARMORED CABLE | material |  | 22.38 |  |
| 4C-185mm2 CU/XLPE / PVC ARMORED CABLE | material |  | 17.28 |  |
| 4C-50mm2 CU/XLPE / PVC ARMORED CABLE | material |  | 5.04 |  |
| 4C-16mm2 CU/XLPE / PVC ARMORED CABLE | material |  | 1.77 |  |
| 4C-16MM2 CU/XLPE / PVC CABLE | material |  | 1.62 |  |
| 1Cx150sq.mm2,Cu, PVC wire | material |  | 3.15 |  |
| 1Cx120sq.mm2,Cu, PVC wire | material |  | 2.61 |  |
| 1Cx95sq.mm,Cu, PVC wire | material |  | 2.1 |  |
| 1Cx70sq.mm2,Cu, PVC wire | material |  | 1.56 |  |
| 1Cx25sq.mm2,Cu, PVC wire | material |  | 0.63 |  |
| 1Cx16sq.mm2,Cu, PVC wire | material |  | 0.3 |  |
| 1Cx10sq.mm2,Cu, PVC wire | material |  | 0.24 |  |
| Supply and installation of KWH meter mounting frame including concrete block for installation of KWH meter | material |  | 54.54 |  |
| Lighting poles with 1 arm, height of (12) meters, including the power distribution box, cables, and RCC foundation. | material |  | 109.38 |  |
| Lighting poles with 2 arms, height of (12) meters, including the power distribution box, cables, and RCC foundation. | material |  | 131.13 |  |
| Street Lighting( LED) Luminaire of Output ? 20,965 lumen complete with control gear and lamp, (129.1) WATT. | material |  | 17.82 |  |
| Including earthing of lighting poles, masts, feeder pillars, unit substations and LV feeders. | material |  | 5.22 |  |
| Street Lighting panels LCP (01) | material |  | 718.83 |  |
| 2-ways ducts, 50mm diameter | material |  | 1.59 |  |
| 6-ways ducts, 110mm diameter | material |  | 2.28 |  |
| 9-ways ducts, 6 x 160mm & 2 x 100mm | material |  | 8.97 |  |
| 6 PVC ducts 150x200 mm (60mm diameter) | material |  | 1.44 |  |
| 6 PVC ducts 600x800 mm (120mm diameter) | material |  | 7.44 |  |
| 6 PVC ducts 800x800 mm (170mm diameter) | material |  | 7.56 |  |
| Manhole Type 2 (1600 x 1600 x 2000) | material |  | 147.51 |  |
| Manhole Type 3 (1200 x 1200 x 2000) | material |  | 139.23 |  |
| 6 PVC ducts 200x150 mm (60mm diameter) | material |  | 3.36 |  |
| 2-ways ducts, 50mm diameter | material |  | 1.77 |  |
| NVR Server with RAID (5, 6 or 10) to record all cameras storage 80TB with all hardware / software / licenses etc. | material |  | 2944.62 |  |
| VMS Server with RAID (5, 6 or 10) complete Hardware / Software with one Color Laser Printer and all associated | material |  | 1682.64 |  |
| Licenses for Cameras, Workstations and Keyboards | material |  | 16806.3 |  |
| Work Station (MMI with two monitors each, for Monitoring for CCTV & ACS) | material |  | 671.31 |  |
| Keyboard with joystick for CCTV with all accessories as per specification | material |  | 181.77 |  |
| Pole mounted IP( PoE) Fixed camera, 5MP,IP 66, IR illumination, 3-8mm varifocal, auto iris lens type | material |  | 123.21 |  |
| Wall mounted IP( PoE) Fixed camera, 5MP,IP 66, IR illumination, 3-8mm varifocal, auto iris lens type | material |  | 123.21 |  |
| 5MP Dome camera ceiling Mounted IP (PoE) indoor | material |  | 125.37 |  |
| 5MP PTZ Multi Sensor Camera IP(PoE) 360 Degree View Outdoor with accessories (IP 66) | material |  | 544.83 |  |
| 8 Port Industrial PoE Switch 10/100BaseT (0 deg to +70 deg. Celsius) | material |  | 326.7 |  |
| Filed Equipment cabinet (FEC), with fan and ventilation, NEMEX 4X ,door, minimum size (600x600x400mm) | material |  | 193.86 |  |
| IP Phone Communication server (hot standby) 50 Port equipped, Gateway, Gatekeeper, H.323, SIP, redundant Power etc. | material |  | 1682.64 |  |
| IP Phone Voice gateway | material |  |  |  |
| Voice IP Phone | material |  | 54 |  |
| NMS Server for IP phone and NETWORK Elements | material |  | 1260 |  |
| NMS Workstation | material |  | 559.8 |  |
| Firm Ware, software & licenses | material |  | 900 |  |
| Data Cable | material |  | 126 |  |
| Power Cable | material |  | 54 |  |
| Layer 3, 24 Port non-PoE switch10/1000BaseT/LX (-40 deg to +70 deg. Celsius), stack module and associated | material |  | 1264.08 |  |
| Layer 2, 24 Port non-PoE switch10/1000BaseT (-40 deg to +70 deg. Celsiu | material |  | 1264.08 |  |
| Network Management System Server | material |  | 3356.34 |  |
| Network Management System workstation | material |  | 671.31 |  |
| 42U rack dimension (W x H x L) 800 x 2000 x 1000 mm | material |  | 195.81 |  |
| 12U rack dimension (W x H x L) 600 x 625 x 600 mm | material |  | 83.94 |  |
| 06C Optical Fiber SM | material |  | 0.18 |  |
| 48C Optical Fiber SM | material |  | 0.87 |  |
| 48 Core Splice Closure | material |  | 39.18 |  |
| Optical fiber patch cord 5m | material |  | 4.5 |  |
| Data Cable (STP CAT 6A) | material |  | 0.15 |  |
| 3C Power Cable armored 1.5mm2 | material |  | 0.3 |  |
| 3C Power Cable armored 2.5 mm2 | material |  | 0.36 |  |
| UTP CAT6A Patch Cord 1m/3m/5m | material |  | 1.71 |  |
| Access Control Unit | material |  | 139.86 |  |
| Access Card Reader | material |  | 2.82 |  |
| Magnetic Lock | material |  | 67.14 |  |
| Break Glass | material |  | 11.22 |  |
| Exit Push button | material |  | 5.64 |  |
| Door Sensor | material |  | 5.64 |  |
| Biometrics Reader | material |  | 19.59 |  |
| Smart Card Printer | material |  | 279.72 |  |
| Card Issue Work Station | material |  | 447.54 |  |
| Photographic Camera with stand | material |  | 335.67 |  |
| Interface modules with CCTV, Fire and other systems | material |  | 1420.89 |  |
| Subgrade | material |  | 1.47 |  |
| Aggregate base course | material |  | 3.03 |  |
| Bituminous base course (Grading I - Class A), including Prime Coat (MC1) | material |  | 18.36 |  |
| Bituminous concrete wearing course, (Grading I - Class A), including tack coat (RC2) | material |  | 18.54 |  |
| 60mm thick | material |  | 1.98 |  |
| 80mm thick | material |  | 2.64 |  |
| Precast Concrete Curbstone 150X300X900 Type (K1-A) | material |  | 1.44 |  |
| Precast Concrete Curbstone 100X200X500 Type (K4) | material |  | 1.44 |  |
| Precast Concrete Curbstone 150X300X500 Type (K1-B) | material |  | 1.44 |  |
| Precast Concrete Curbstone Type (K1-C) | material |  | 1.44 |  |
| Flush Kerb Type (D) | material |  | 1.44 |  |
| Traffic signs, ground mounted, Sheet Aluminum, (breakaway) Single post IPE, with all accessories | material |  | 28.8 |  |
| Precast Concrete Blister Warning Tactile Paver Brown Finish 300*300*60mm | material |  | 5.4 |  |
| Retroreflective Thermoplastic White Traffic lines | material |  | 1.26 |  |
| Retroreflective Thermoplastic Yellow, Traffic lines | material |  | 1.26 |  |
| Unskilled Labor | labor |  |  |  |
| Excavator | equipment |  |  |  |
| Mobile Crane | equipment |  |  |  |
| Grader | equipment |  |  | ï»? |
| Skilled Labor | labor |  |  |  |
| Loader | equipment |  |  |  |
| Depth Between 0m to 1.50m | material |  | 43.4 |  |
| Depth Between 1.50m to 2.50m | material |  | 49.5 |  |
| Depth > 2.50m | material |  | 55.6 |  |
| Depth Between 1.50m to 2.50m | material |  | 46.1 |  |
| Depth Between 2.50m to 3.50m | material |  | 59.8 |  |
| Depth > 3.50m | material |  | 62.6 |  |
| Depth Between 2.50m to 3.50m | material |  | 69 |  |
| Depth > 3.50m | material |  | 72.5 |  |
| Depth Between 0m to 1.50m | material |  | 63.3 |  |
| Depth Between 1.50m to 2.50m | material |  | 67 |  |
| Depth Between 2.50m to 3.50m | material |  | 78 |  |
| Depth > 3.50m | material |  | 80.9 |  |
| Depth Between 2.50m to 3.50m | material |  | 89.3 |  |
| Depth > 3.50m | material |  | 92.6 |  |
| Depth Between 3.50m to 4.50m | material |  | 103.8 |  |
| Depth > 4.50m | material |  | 107.4 |  |
| Depth Between 3.50m to 4.50m | material |  | 114.4 |  |
| Depth > 4.50m | material |  | 120.8 |  |
| MH depth 1.5 - 2.5m | material |  | 1183.5 |  |
| MH depth 2.5 - 3.5m | material |  | 1694 |  |
| MH depth > 3.50m | material |  |  |  |
| MH depth 2.5 -3.5m | material |  | 2187 |  |
| MH depth > 3.50m | material |  | 2571.2 |  |
| Single Catch Basin 1000mm x 1000mm | material |  | 780 |  |
| Double Catch Basin 1200mm x 2300mm | material |  | 1020 |  |
| Depth Between 0m to 1.50m | material |  | 24.3 |  |
| Depth Between 1.50m to 2.50m | material |  | 26 |  |
| Depth > 2.50m | material |  | 39.8 |  |
| Depth Between 0m to 1.50m | material |  | 27.8 |  |
| Depth Between 1.50m to 2.50m | material |  | 29.8 |  |
| Depth Between 2.50m to 3.50m | material |  | 43.5 |  |
| Depth > 3.50m | material |  | 46.1 |  |
| HDPE Force Main (PE 100, SDR 11, PN 16 bar) DN 160 mm diameter, in trenches depth: 0- 1.5m | material |  | 30.4 |  |
| HDPE Force Main (PE 100, SDR 11, PN 16 bar) DN 160 mm diameter, in trenches depth: 1.51- 2.5m | material |  | 33.4 |  |
| Depth: 0 - 1.5m | material |  | 1030.1 |  |
| Depth: 1.51 - 2.5m | material |  | 118.4 |  |
| Depth: 2.51 - 3.5m | material |  | 1694 |  |
| Depth > 3.50m | material |  | 2005.4 |  |
| Depth Between 0m to 1.50m | material |  | 7.2 |  |
| Depth Between 1.50m to 2.50m | material |  | 9.3 |  |
| Depth > 2.50m | material |  | 11.3 |  |
| Depth Between 0m to 1.50m | material |  | 10.7 |  |
| Depth Between 1.50m to 2.50m | material |  | 12.6 |  |
| Depth > 2.50m | material |  | 14.7 |  |
| Depth Between 0m to 1.50m | material |  | 14.7 |  |
| Depth Between 1.50m to 2.50m | material |  | 16.7 |  |
| Depth > 2.50m | material |  | 18.6 |  |
| Depth Between 0m to 1.50m | material |  | 27.5 |  |
| Depth Between 1.50m to 2.50m | material |  | 30 |  |
| Depth > 2.50m | material |  | 32.1 |  |
| Gate valves Dia 50 mm | material |  | 180 |  |
| Gate valves Dia 100 mm | material |  | 216 |  |
| Gate valves Dia 150 mm | material |  | 288 |  |
| Gate valves Dia 250 mm | material |  | 504 |  |
| Air valves with Dia 50 mm | material |  | 960 |  |
| Washout valve Dia 100 mm | material |  | 960 |  |
| 3-outlet fire hydrant (2 x 2.5 inch and 1 x 4.5 inch) in the form of a separate dry vacuum cylinder, complete according to drawings. | material |  | 1140 |  |
| Wash out chamber (2500x 2500mm) | material |  | 2400 |  |
| Air valve chamber (1000x 1000 mm) | material |  | 1200 |  |
| Flow meter chamber (1500x 2500 mm) | material |  | 2400 |  |
| Flow meter dia 100 mm | material |  | 3060 |  |
| Glass Fused Bolted (GLS) 1500 m3 Tank with associated accessories & manufacturer recommendation for the foundation | material |  | 61509.4 |  |
| Excavation for Trench size 40cm wide and 80cm deep (for 1 cable) | material |  | 4.1 |  |
| Excavation for Trench Size 60cm wide and 80cm deep (for 2 cables) | material |  | 4.1 |  |
| Excavation for Trench Size 90cm wide and 80cm deep (for 3 cables) | material |  | 4.1 |  |
| Excavation for Trench Size 180cm wide and 80cm deep (for 6 cables) | material |  | 4.1 |  |
| Excavation for Trench Size 210 cm wide and 80cm deep (for 7 cables) | material |  | 4.1 |  |
| Excavation for Trench Size 240cm wide and 80cm deep (for 8 cables) | material |  | 4.1 |  |
| Duct bank for (33) cables | material |  | 216.3 |  |
| Duct bank for (21) cables | material |  | 143.8 |  |
| Duct bank for (15) cables | material |  | 107.7 |  |
| HV Cable Road Crossing | material |  | 62.3 |  |
| Road crossing ducts, 2 ways (2 x 150mm HDPE) | material |  | 24.6 |  |
| Road crossing ducts, 2 ways (2 x 110mm UPVC) | material |  | 15.4 |  |
| Road crossing ducts, 3 ways (3 x 110mm UPVC) | material |  | 22 |  |
| 4C-300mm2 CU/XLPE / PVC ARMORED CABLE | material |  | 91.4 |  |
| 4C-240mm2 CU/XLPE / PVC ARMORED CABLE | material |  | 74.6 |  |
| 4C-185mm2 CU/XLPE / PVC ARMORED CABLE | material |  | 57.6 |  |
| 4C-50mm2 CU/XLPE / PVC ARMORED CABLE | material |  | 16.8 |  |
| 4C-16mm2 CU/XLPE / PVC ARMORED CABLE | material |  | 5.9 |  |
| 4C-16MM2 CU/XLPE / PVC CABLE | material |  | 5.4 |  |
| 1Cx150sq.mm2,Cu, PVC wire | material |  | 10.5 |  |
| 1Cx120sq.mm2,Cu, PVC wire | material |  | 8.7 |  |
| 1Cx95sq.mm,Cu, PVC wire | material |  | 7 |  |
| 1Cx70sq.mm2,Cu, PVC wire | material |  | 5.2 |  |
| 1Cx25sq.mm2,Cu, PVC wire | material |  | 2.1 |  |
| 1Cx16sq.mm2,Cu, PVC wire | material |  | 1 |  |
| 1Cx10sq.mm2,Cu, PVC wire | material |  | 0.8 |  |
| Supply and installation of KWH meter mounting frame including concrete block for installation of KWH meter | material |  | 181.8 |  |
| Street Lighting panels LCP (01) | material |  | 2396.1 |  |
| Lighting poles with 1 arm, height of (12) meters, including the power distribution box, cables, and RCC foundation. | material |  | 364.6 |  |
| Lighting poles with 2 arms, height of (12) meters, including the power distribution box, cables, and RCC foundation. | material |  | 437.1 |  |
| Street Lighting( LED) Luminaire of Output ? 20,965 lumen complete with control gear and lamp, (129.1) WATT. | material |  | 59.4 |  |
| Including earthing of lighting poles, masts, feeder pillars, unit substations and LV feeders. | material |  | 17.4 |  |
| 2-ways ducts, 50mm diameter | material |  | 5.3 |  |
| 6-ways ducts, 110mm diameter | material |  | 7.6 |  |
| 9-ways ducts, 6 x 160mm & 2 x 100mm | material |  | 29.9 |  |
| Manhole Type 2 (1600 x 1600 x 2000) | material |  | 491.7 |  |
| Manhole Type 3 (1200 x 1200 x 2000) | material |  | 464.1 |  |
| 6 PVC ducts 150x200 mm (60mm diameter) | material |  | 4.8 |  |
| 6 PVC ducts 600x800 mm (120mm diameter) | material |  | 24.8 |  |
| 6 PVC ducts 800x800 mm (170mm diameter) | material |  | 25.2 |  |
| NVR Server with RAID (5, 6 or 10) to record all cameras storage 80TB with all hardware / software / licenses etc. | material |  | 9815.4 |  |
| VMS Server with RAID (5, 6 or 10) complete Hardware / Software with one Color Laser Printer and all associated | material |  | 5608.8 |  |
| Licenses for Cameras, Workstations and Keyboards | material |  | 56021.1 |  |
| Work Station (MMI with two monitors each, for Monitoring for CCTV & ACS) | material |  | 2237.7 |  |
| Keyboard with joystick for CCTV with all accessories as per specification | material |  | 605.9 |  |
| Pole mounted IP( PoE) Fixed camera, 5MP,IP 66, IR illumination, 3-8mm varifocal, auto iris lens type | material |  | 410.7 |  |
| Wall mounted IP( PoE) Fixed camera, 5MP,IP 66, IR illumination, 3-8mm varifocal, auto iris lens type | material |  | 410.7 |  |
| 5MP Dome camera ceiling Mounted IP (PoE) indoor | material |  | 417.9 |  |
| 5MP PTZ Multi Sensor Camera IP(PoE) 360 Degree View Outdoor with accessories (IP 66) | material |  | 1816.1 |  |
| 8 Port Industrial PoE Switch 10/100BaseT (0 deg to +70 deg. Celsius) | material |  | 1089 |  |
| Filed Equipment cabinet (FEC), with fan and ventilation, NEMEX 4X ,door, minimum size (600x600x400mm) | material |  | 646.2 |  |
| 6 PVC ducts 200x150 mm (60mm diameter) | material |  | 11.2 |  |
| 2-ways ducts, 50mm diameter | material |  | 5.9 |  |
| IP Phone Communication server (hot standby) 50 Port equipped, Gateway, Gatekeeper, H.323, SIP, redundant Power etc. | material |  | 5608.8 |  |
| IP Phone Voice gateway | material |  |  |  |
| Voice IP Phone | material |  | 180 |  |
| NMS Server for IP phone and NETWORK Elements | material |  | 4200 |  |
| NMS Workstation | material |  | 1866 |  |
| Firm Ware, software & licenses | material |  | 3000 |  |
| Data Cable | material |  | 420 |  |
| Power Cable | material |  | 180 |  |
| Layer 3, 24 Port non-PoE switch10/1000BaseT/LX (-40 deg to +70 deg. Celsius), stack module and associated | material |  | 4213.6 |  |
| Layer 2, 24 Port non-PoE switch10/1000BaseT (-40 deg to +70 deg. Celsiu | material |  | 4213.6 |  |
| Network Management System Server | material |  | 11187.8 |  |
| Network Management System workstation | material |  | 2237.7 |  |
| 42U rack dimension (W x H x L) 800 x 2000 x 1000 mm | material |  | 652.7 |  |
| 12U rack dimension (W x H x L) 600 x 625 x 600 mm | material |  | 279.8 |  |
| 06C Optical Fiber SM | material |  | 0.6 |  |
| 48C Optical Fiber SM | material |  | 2.9 |  |
| 48 Core Splice Closure | material |  | 130.6 |  |
| Optical fiber patch cord 5m | material |  | 15 |  |
| Data Cable (STP CAT 6A) | material |  | 0.5 |  |
| 3C Power Cable armored 1.5mm2 | material |  | 1 |  |
| 3C Power Cable armored 2.5 mm2 | material |  | 1.2 |  |
| UTP CAT6A Patch Cord 1m/3m/5m | material |  | 5.7 |  |
| Access Control Unit | material |  | 466.2 |  |
| Access Card Reader | material |  | 9.4 |  |
| Magnetic Lock | material |  | 223.8 |  |
| Break Glass | material |  | 37.4 |  |
| Exit Push button | material |  | 18.8 |  |
| Door Sensor | material |  | 18.8 |  |
| Biometrics Reader | material |  | 65.3 |  |
| Smart Card Printer | material |  | 932.4 |  |
| Card Issue Work Station | material |  | 1491.8 |  |
| Photographic Camera with stand | material |  | 1118.9 |  |
| Interface modules with CCTV, Fire and other systems | material |  | 4736.3 |  |
| Excavations (including Roads , Plots and Pond) | material |  | 0.5 |  |
| Embankments to the Site and Roads (including Roads , Plots and Pond) | material |  | 1.1 |  |
| Subgrade | material |  | 4.9 |  |
| Aggregate base course | material |  | 10.1 |  |
| Bituminous base course (Grading I - Class A), including Prime Coat (MC1) | material |  | 61.2 |  |
| Bituminous concrete wearing course, (Grading I - Class A), including tack coat (RC2) | material |  | 61.8 |  |
| Precast Concrete Curbstone 150X300X900 Type (K1-A) | material |  | 4.8 |  |
| Precast Concrete Curbstone 100X200X500 Type (K4) | material |  | 4.8 |  |
| Precast Concrete Curbstone 150X300X500 Type (K1-B) | material |  | 4.8 |  |
| Precast Concrete Curbstone Type (K1-C) | material |  | 4.8 |  |
| Flush Kerb Type (D) | material |  | 4.8 |  |
| 60mm thick | material |  | 6.6 |  |
| 80mm thick | material |  | 8.8 |  |
| Retroreflective Thermoplastic White Traffic lines | material |  | 4.2 |  |
| Retroreflective Thermoplastic Yellow, Traffic lines | material |  | 4.2 |  |
| Traffic signs, ground mounted, Sheet Aluminum, (breakaway) Single post IPE, with all accessories | material |  | 96 |  |
| Precast Concrete Blister Warning Tactile Paver Brown Finish 300*300*60mm | material |  | 18 |  |
| Single Catch Basin 1000mm x 1000mm | material |  | 234 |  |
| Double Catch Basin 1200mm x 2300mm | material |  | 306 |  |
| NVR Server with RAID (5, 6 or 10) to record all cameras storage 80TB with all hardware / software / licenses etc. | material |  | 19630.8 |  |
| VMS Server with RAID (5, 6 or 10) complete Hardware / Software with one Color Laser Printer and all associated | material |  | 11217.6 |  |
| Licenses for Cameras, Workstations and Keyboards | material |  | 112042 |  |
| Work Station (MMI with two monitors each, for Monitoring for CCTV & ACS) | material |  | 4475.4 |  |
| Keyboard with joystick for CCTV with all accessories as per specification | material |  | 1211.8 |  |
| Pole mounted IP( PoE) Fixed camera, 5MP,IP 66, IR illumination, 3-8mm varifocal, auto iris lens type | material |  | 821.4 |  |
| Wall mounted IP( PoE) Fixed camera, 5MP,IP 66, IR illumination, 3-8mm varifocal, auto iris lens type | material |  | 821.4 |  |
| 5MP Dome camera ceiling Mounted IP (PoE) indoor | material |  | 835.8 |  |
| 5MP PTZ Multi Sensor Camera IP(PoE) 360 Degree View Outdoor with accessories (IP 66) | material |  | 3632.2 |  |
| 8 Port Industrial PoE Switch 10/100BaseT (0 deg to +70 deg. Celsius) | material |  | 2178 |  |
| Filed Equipment cabinet (FEC), with fan and ventilation, NEMEX 4X ,door, minimum size (600x600x400mm) | material |  | 1292.4 |  |
| IP Phone Communication server (hot standby) 50 Port equipped, Gateway, Gatekeeper, H.323, SIP, redundant Power etc. | material |  | 11217.6 |  |
| IP Phone Voice gateway | material |  |  |  |
| Voice IP Phone | material |  | 360 |  |
| NMS Server for IP phone and NETWORK Elements | material |  | 8400 |  |
| NMS Workstation | material |  | 3732 |  |
| Firm Ware, software & licenses | material |  | 6000 |  |
| Data Cable | material |  | 840 |  |
| Power Cable | material |  | 360 |  |
| Layer 3, 24 Port non-PoE switch10/1000BaseT/LX (-40 deg to +70 deg. Celsius), stack module and associated | material |  | 8427.2 |  |
| Layer 2, 24 Port non-PoE switch10/1000BaseT (-40 deg to +70 deg. Celsiu | material |  | 8427.2 |  |
| Network Management System Server | material |  | 22375.6 |  |
| Network Management System workstation | material |  | 4475.4 |  |
| 42U rack dimension (W x H x L) 800 x 2000 x 1000 mm | material |  | 1305.4 |  |
| 12U rack dimension (W x H x L) 600 x 625 x 600 mm | material |  | 559.6 |  |
| 06C Optical Fiber SM | material |  | 1.2 |  |
| 48C Optical Fiber SM | material |  | 5.8 |  |
| 48 Core Splice Closure | material |  | 261.2 |  |
| Optical fiber patch cord 5m | material |  | 30 |  |
| Data Cable (STP CAT 6A) | material |  | 1 |  |
| 3C Power Cable armored 1.5mm2 | material |  | 2 |  |
| 3C Power Cable armored 2.5 mm2 | material |  | 2.4 |  |
| UTP CAT6A Patch Cord 1m/3m/5m | material |  | 11.4 |  |
| Access Control Unit | material |  | 932.4 |  |
| Access Card Reader | material |  | 18.8 |  |
| Magnetic Lock | material |  | 447.6 |  |
| Break Glass | material |  | 74.8 |  |
| Exit Push button | material |  | 37.6 |  |
| Door Sensor | material |  | 37.6 |  |
| Biometrics Reader | material |  | 130.6 |  |
| Smart Card Printer | material |  | 1864.8 |  |
| Card Issue Work Station | material |  | 2983.6 |  |
| Photographic Camera with stand | material |  | 2237.8 |  |
| Interface modules with CCTV, Fire and other systems | material |  | 9472.6 |  |
| Depth Between 0m to 1.50m | material |  | 290.78 |  |
| Depth Between 1.50m to 2.50m | material |  | 331.65 |  |
| Depth > 2.50m | material |  | 372.52 |  |
| Depth Between 1.50m to 2.50m | material |  | 308.87 |  |
| Depth Between 2.50m to 3.50m | material |  | 400.66 |  |
| Depth > 3.50m | material |  | 419.42 |  |
| Depth Between 2.50m to 3.50m | material |  | 462.3 |  |
| Depth > 3.50m | material |  | 485.75 |  |
| Depth Between 0m to 1.50m | material |  | 424.11 |  |
| Depth Between 1.50m to 2.50m | material |  | 448.9 |  |
| Depth Between 2.50m to 3.50m | material |  | 522.6 |  |
| Depth > 3.50m | material |  | 542.03 |  |
| Depth Between 2.50m to 3.50m | material |  | 598.31 |  |
| Depth > 3.50m | material |  | 620.42 |  |
| Depth Between 3.50m to 4.50m | material |  | 695.46 |  |
| Depth > 4.50m | material |  | 719.58 |  |
| Depth Between 3.50m to 4.50m | material |  | 766.48 |  |
| Depth > 4.50m | material |  | 809.36 |  |
| Plumber | labor |  |  |  |
| JCB | equipment |  |  |  |
| Dump Truck | equipment |  |  |  |
| Single Catch Basin 1000mm x 1000mm | material |  | 5226 |  |
| Double Catch Basin 1200mm x 2300mm | material |  | 6834 |  |
| Water Tanker | equipment |  |  |  |
| Depth Between 0m to 1.50m | material |  | 48.24 |  |
| Depth Between 1.50m to 2.50m | material |  | 62.31 |  |
| Depth > 2.50m | material |  | 75.71 |  |
| Depth Between 0m to 1.50m | material |  | 71.69 |  |
| Depth Between 1.50m to 2.50m | material |  | 84.42 |  |
| Depth > 2.50m | material |  | 98.49 |  |
| Depth Between 0m to 1.50m | material |  | 98.49 |  |
| Depth Between 1.50m to 2.50m | material |  | 111.89 |  |
| Depth > 2.50m | material |  | 124.62 |  |
| Depth Between 0m to 1.50m | material |  | 184.25 |  |
| Depth Between 1.50m to 2.50m | material |  | 201 |  |
| Depth > 2.50m | material |  | 215.07 |  |
| 3-outlet fire hydrant (2 x 2.5 inch and 1 x 4.5 inch) in the form of a separate dry vacuum cylinder, complete according to drawings. | material |  | 7638 |  |
| pipe line O.D 32 mm PN 10, in depth 0 to 1.5 m | material |  | 20.1 |  |
| pipe line O.D 40 mm PN 10, in depth 0 to 1.5 m | material |  | 28.14 |  |
| pipe line O.D 50 mm PN 10, in depth 0 to 1.5 m | material |  | 40.2 |  |
| Gate valve 50 mm PN16 | material |  | 964.8 |  |
| Direct Burried Gate valve 40 mm PN16 | material |  | 964.8 |  |
| Flushing Bronze gate valve dia 1.5" inside PVC box | material |  | 1206 |  |
| Air release valve 1.5" inside PVC box | material |  | 1206 |  |
| Extra flexible pressure compensating on surface inline dripline`s, O.D. is 16.1 mm | material |  | 10.05 |  |
| Electrical Solenoid Valve ( 1.5") inside PVC box | material |  | 964.8 |  |
| Electrical Solenoid Valve ( 2") inside PVC box | material |  | 1206 |  |
| Quick coupling valve 1" inside a round valve box 10" size with a manual gate valve, hose swivel and key with all accessories | material |  | 2010 |  |
| Advanced Irrigation controller subject to client approval, can connect with Centarl Control system | material |  | 20100 |  |
| Decoder cables 12 AWG between valves and controllers, The cables shall be pulled through 32Ø UPVC conduit | material |  | 8.04 |  |
| Preparing the irrigation program for the entire system and providing technical services for monitoring and controlling the central irrigation systems | material |  | 24120 |  |
| Excavation for Trench size 40cm wide and 80cm deep (for 1 cable) | material |  | 27.47 |  |
| Excavation for Trench Size 60cm wide and 80cm deep (for 2 cables) | material |  | 27.47 |  |
| Excavation for Trench Size 90cm wide and 80cm deep (for 3 cables) | material |  | 27.47 |  |
| Excavation for Trench Size 180cm wide and 80cm deep (for 6 cables) | material |  | 27.47 |  |
| Excavation for Trench Size 210 cm wide and 80cm deep (for 7 cables) | material |  | 27.47 |  |
| Excavation for Trench Size 240cm wide and 80cm deep (for 8 cables) | material |  | 27.47 |  |
| Duct bank for (33) cables | material |  | 1449.21 |  |
| Duct bank for (21) cables | material |  | 963.46 |  |
| Duct bank for (15) cables | material |  | 721.59 |  |
| HV Cable Road Crossing | material |  | 417.41 |  |
| Electrical Technician | labor |  |  |  |
| Cable Drum Trailer | equipment |  |  |  |
| Boom Truck | equipment |  |  |  |
| Pulling Machine | equipment |  |  |  |
| Road crossing ducts, 2 ways (2 x 150mm HDPE) | material |  | 164.82 |  |
| Road crossing ducts, 2 ways (2 x 110mm UPVC) | material |  | 103.18 |  |
| Road crossing ducts, 3 ways (3 x 110mm UPVC) | material |  | 147.4 |  |
| 4C-300mm2 CU/XLPE / PVC ARMORED CABLE | material |  | 612.38 |  |
| 4C-240mm2 CU/XLPE / PVC ARMORED CABLE | material |  | 499.82 |  |
| 4C-185mm2 CU/XLPE / PVC ARMORED CABLE | material |  | 385.92 |  |
| 4C-50mm2 CU/XLPE / PVC ARMORED CABLE | material |  | 112.56 |  |
| 4C-16mm2 CU/XLPE / PVC ARMORED CABLE | material |  | 39.53 |  |
| 4C-16MM2 CU/XLPE / PVC CABLE | material |  | 36.18 |  |
| 1Cx150sq.mm2,Cu, PVC wire | material |  | 70.35 |  |
| 1Cx120sq.mm2,Cu, PVC wire | material |  | 58.29 |  |
| 1Cx95sq.mm,Cu, PVC wire | material |  | 46.9 |  |
| 1Cx70sq.mm2,Cu, PVC wire | material |  | 34.84 |  |
| 1Cx25sq.mm2,Cu, PVC wire | material |  | 14.07 |  |
| 1Cx16sq.mm2,Cu, PVC wire | material |  | 6.7 |  |
| 1Cx10sq.mm2,Cu, PVC wire | material |  | 5.36 |  |
| Lighting poles with 1 arm, height of (12) meters, including the power distribution box, cables, and RCC foundation. | material |  | 2442.82 |  |
| Lighting poles with 2 arms, height of (12) meters, including the power distribution box, cables, and RCC foundation. | material |  | 2928.57 |  |
| Street Lighting( LED) Luminaire of Output ? 20,965 lumen complete with control gear and lamp, (129.1) WATT. | material |  | 397.98 |  |
| Street Lighting panels LCP (01) | material |  | 16053.9 |  |
| 2-ways ducts, 50mm diameter | material |  | 35.51 |  |
| 6-ways ducts, 110mm diameter | material |  | 50.92 |  |
| 9-ways ducts, 6 x 160mm & 2 x 100mm | material |  | 200.33 |  |
| 6 PVC ducts 200x150 mm (60mm diameter) | material |  | 75.04 |  |
| 2-ways ducts, 50mm diameter | material |  | 39.53 |  |
| NVR Server with RAID (5, 6 or 10) to record all cameras storage 80TB with all hardware / software / licenses etc. | material |  | 65763.2 |  |
| VMS Server with RAID (5, 6 or 10) complete Hardware / Software with one Color Laser Printer and all associated | material |  | 37579 |  |
| Licenses for Cameras, Workstations and Keyboards | material |  | 375341 |  |
| Work Station (MMI with two monitors each, for Monitoring for CCTV & ACS) | material |  | 14992.6 |  |
| Keyboard with joystick for CCTV with all accessories as per specification | material |  | 4059.53 |  |
| Pole mounted IP( PoE) Fixed camera, 5MP,IP 66, IR illumination, 3-8mm varifocal, auto iris lens type | material |  | 2751.69 |  |
| Wall mounted IP( PoE) Fixed camera, 5MP,IP 66, IR illumination, 3-8mm varifocal, auto iris lens type | material |  | 2751.69 |  |
| 5MP Dome camera ceiling Mounted IP (PoE) indoor | material |  | 2799.93 |  |
| 5MP PTZ Multi Sensor Camera IP(PoE) 360 Degree View Outdoor with accessories (IP 66) | material |  | 12167.9 |  |
| 8 Port Industrial PoE Switch 10/100BaseT (0 deg to +70 deg. Celsius) | material |  | 7296.3 |  |
| Filed Equipment cabinet (FEC), with fan and ventilation, NEMEX 4X ,door, minimum size (600x600x400mm) | material |  | 4329.54 |  |
| IP Phone Communication server (hot standby) 50 Port equipped, Gateway, Gatekeeper, H.323, SIP, redundant Power etc. | material |  | 37579 |  |
| IP Phone Voice gateway | material |  |  |  |
| Voice IP Phone | material |  | 1206 |  |
| NMS Server for IP phone and NETWORK Elements | material |  | 28140 |  |
| NMS Workstation | material |  | 12502.2 |  |
| Firm Ware, software & licenses | material |  | 20100 |  |
| Data Cable | material |  | 2814 |  |
| Power Cable | material |  | 1206 |  |
| Layer 3, 24 Port non-PoE switch10/1000BaseT/LX (-40 deg to +70 deg. Celsius), stack module and associated | material |  | 28231.1 |  |
| Layer 2, 24 Port non-PoE switch10/1000BaseT (-40 deg to +70 deg. Celsiu | material |  | 28231.1 |  |
| Network Management System Server | material |  | 74958.3 |  |
| Network Management System workstation | material |  | 14992.6 |  |
| 42U rack dimension (W x H x L) 800 x 2000 x 1000 mm | material |  | 4373.09 |  |
| 12U rack dimension (W x H x L) 600 x 625 x 600 mm | material |  | 1874.66 |  |
| 06C Optical Fiber SM | material |  | 4.02 |  |
| 48C Optical Fiber SM | material |  | 19.43 |  |
| 48 Core Splice Closure | material |  | 875.02 |  |
| Optical fiber patch cord 5m | material |  | 100.5 |  |
| Data Cable (STP CAT 6A) | material |  | 3.35 |  |
| 3C Power Cable armored 1.5mm2 | material |  | 6.7 |  |
| 3C Power Cable armored 2.5 mm2 | material |  | 8.04 |  |
| UTP CAT6A Patch Cord 1m/3m/5m | material |  | 38.19 |  |
| Access Control Unit | material |  | 3123.54 |  |
| Access Card Reader | material |  | 62.98 |  |
| Magnetic Lock | material |  | 1499.46 |  |
| Break Glass | material |  | 250.58 |  |
| Exit Push button | material |  | 125.96 |  |
| Door Sensor | material |  | 125.96 |  |
| Biometrics Reader | material |  | 437.51 |  |
| Manhole Type 2 (1600 x 1600 x 2000) | material |  | 3294.39 |  |
| Manhole Type 3 (1200 x 1200 x 2000) | material |  | 3109.47 |  |
| Precast Concrete Curbstone 150X300X900 Type (K1-A) | material |  | 32.16 |  |
| Precast Concrete Curbstone 100X200X500 Type (K4) | material |  | 32.16 |  |
| Precast Concrete Curbstone 150X300X500 Type (K1-B) | material |  | 32.16 |  |
| Precast Concrete Curbstone Type (K1-C) | material |  | 32.16 |  |
| Flush Kerb Type (D) | material |  | 32.16 |  |
| Mason | labor |  |  | ï»? |
| Compactor | equipment |  |  |  |
| Forklift | equipment |  |  | ï»? |
| 60mm thick | material |  | 44.22 |  |
| 80mm thick | material |  | 58.96 |  |
| Subgrade | material |  | 32.83 |  |
| Aggregate base course | material |  | 67.67 |  |
| Depth Between 0m to 1.50m | material |  | 162.81 |  |
| Depth Between 1.50m to 2.50m | material |  | 174.2 |  |
| Depth > 2.50m | material |  | 266.66 |  |
| Depth Between 0m to 1.50m | material |  | 186.26 |  |
| Depth Between 1.50m to 2.50m | material |  | 199.66 |  |
| Depth Between 2.50m to 3.50m | material |  | 291.45 |  |
| Depth > 3.50m | material |  | 308.87 |  |
| HDPE Force Main (PE 100, SDR 11, PN 16 bar) DN 160 mm diameter, in trenches depth: 0- 1.5m | material |  | 203.68 |  |
| HDPE Force Main (PE 100, SDR 11, PN 16 bar) DN 160 mm diameter, in trenches depth: 1.51- 2.5m | material |  | 223.78 |  |
| Excavations (including Roads , Plots and Pond) | material |  | 4.5 |  |
| Dozer | equipment |  |  |  |
| Embankments to the Site and Roads (including Roads , Plots and Pond) | material |  | 9.9 |  |
| 6 PVC ducts 150x200 mm (60mm diameter) | material |  | 32.16 |  |
| 6 PVC ducts 600x800 mm (120mm diameter) | material |  | 166.16 |  |
| 6 PVC ducts 800x800 mm (170mm diameter) | material |  | 168.84 |  |
| Wash out chamber (2500x 2500mm) | material |  | 16080 |  |
| Air valve chamber (1000x 1000 mm) | material |  | 8040 |  |
| Including earthing of lighting poles, masts, feeder pillars, unit substations and LV feeders. | material |  | 116.58 |  |
| Retroreflective Thermoplastic White Traffic lines | material |  | 28.14 |  |
| Retroreflective Thermoplastic Yellow, Traffic lines | material |  | 28.14 |  |
| Road Marking Machine | equipment |  |  | ï»? |
| Traffic signs, ground mounted, Sheet Aluminum, (breakaway) Single post IPE, with all accessories | material |  | 643.2 |  |
| Precast Concrete Blister Warning Tactile Paver Brown Finish 300*300*60mm | material |  | 120.6 |  |
| Bituminous base course (Grading I - Class A), including Prime Coat (MC1) | material |  | 410.04 |  |
| MC1 Sprinkler | equipment |  |  | ï»? |
| Bituminous concrete wearing course, (Grading I - Class A), including tack coat (RC2) | material |  | 414.06 |  |
| Bob Cat | equipment |  |  | ï»? |
| Asphalt Paver | equipment |  |  | ï»? |
| Depth: 0 - 1.5m | material |  | 6901.67 |  |
| Depth: 1.51 - 2.5m | material |  | 793.28 |  |
| Depth: 2.51 - 3.5m | material |  | 11349.8 |  |
| Depth > 3.50m | material |  | 13436.2 |  |
| MH depth 1.5 - 2.5m | material |  | 2367 |  |
| MH depth 2.5 - 3.5m | material |  | 3388 |  |
| MH depth > 3.50m | material |  |  |  |
| MH depth 2.5 -3.5m | material |  | 4374 |  |
| MH depth > 3.50m | material |  | 5142.4 |  |
| Depth Between 1.50m to 2.50m | material |  | 92.2 |  |
| Depth Between 2.50m to 3.50m | material |  | 119.6 |  |
| Depth > 3.50m | material |  | 125.2 |  |
| Depth Between 2.50m to 3.50m | material |  | 138 |  |
| Depth > 3.50m | material |  | 145 |  |
| Depth Between 0m to 1.50m | material |  | 126.6 |  |
| Depth Between 1.50m to 2.50m | material |  | 134 |  |
| Depth Between 2.50m to 3.50m | material |  | 156 |  |
| Depth > 3.50m | material |  | 161.8 |  |
| Depth Between 2.50m to 3.50m | material |  | 178.6 |  |
| Depth > 3.50m | material |  | 185.2 |  |
| Depth Between 3.50m to 4.50m | material |  | 207.6 |  |
| Depth > 4.50m | material |  | 214.8 |  |
| Depth Between 3.50m to 4.50m | material |  | 228.8 |  |
| Depth > 4.50m | material |  | 241.6 |  |
| Single Catch Basin 1000mm x 1000mm | material |  | 1560 |  |
| Double Catch Basin 1200mm x 2300mm | material |  | 2040 |  |
| Depth Between 0m to 1.50m | material |  | 48.6 |  |
| Depth Between 1.50m to 2.50m | material |  | 52 |  |
| Depth > 2.50m | material |  | 79.6 |  |
| Depth Between 0m to 1.50m | material |  | 55.6 |  |
| Depth Between 1.50m to 2.50m | material |  | 59.6 |  |
| Depth Between 2.50m to 3.50m | material |  | 87 |  |
| Depth > 3.50m | material |  | 92.2 |  |
| HDPE Force Main (PE 100, SDR 11, PN 16 bar) DN 160 mm diameter, in trenches depth: 0- 1.5m | material |  | 60.8 |  |
| HDPE Force Main (PE 100, SDR 11, PN 16 bar) DN 160 mm diameter, in trenches depth: 1.51- 2.5m | material |  | 66.8 |  |
| Depth: 0 - 1.5m | material |  | 2060.2 |  |
| Depth: 1.51 - 2.5m | material |  | 236.8 |  |
| Depth: 2.51 - 3.5m | material |  | 3388 |  |
| Depth > 3.50m | material |  | 4010.8 |  |
| Depth Between 0m to 1.50m | material |  | 14.4 |  |
| Depth Between 1.50m to 2.50m | material |  | 18.6 |  |
| Depth > 2.50m | material |  | 22.6 |  |
| Depth Between 0m to 1.50m | material |  | 21.4 |  |
| Depth Between 1.50m to 2.50m | material |  | 25.2 |  |
| Depth > 2.50m | material |  | 29.4 |  |
| Depth Between 0m to 1.50m | material |  | 29.4 |  |
| Depth Between 1.50m to 2.50m | material |  | 33.4 |  |
| Depth > 2.50m | material |  | 37.2 |  |
| Depth Between 0m to 1.50m | material |  | 55 |  |
| Depth Between 1.50m to 2.50m | material |  | 60 |  |
| Depth > 2.50m | material |  | 64.2 |  |
| Gate valves Dia 50 mm | material |  | 360 |  |
| Gate valves Dia 100 mm | material |  | 432 |  |
| Gate valves Dia 150 mm | material |  | 576 |  |
| Gate valves Dia 250 mm | material |  | 1008 |  |
| Air valves with Dia 50 mm | material |  | 1920 |  |
| Washout valve Dia 100 mm | material |  | 1920 |  |
| Wash out chamber (2500x 2500mm) | material |  | 4800 |  |
| Air valve chamber (1000x 1000 mm) | material |  | 2400 |  |
| Flow meter chamber (1500x 2500 mm) | material |  | 4800 |  |
| Flow meter dia 100 mm | material |  | 6120 |  |
| pipe line O.D 32 mm PN 10, in depth 0 to 1.5 m | material |  | 6 |  |
| pipe line O.D 40 mm PN 10, in depth 0 to 1.5 m | material |  | 8.4 |  |
| pipe line O.D 50 mm PN 10, in depth 0 to 1.5 m | material |  | 12 |  |
| Gate valve 50 mm PN16 | material |  | 288 |  |
| Direct Burried Gate valve 40 mm PN16 | material |  | 288 |  |
| Pressure–compensating bubblers 110 Lit/Hr | material |  | 3.4 |  |
| Flushing Bronze gate valve dia 1.5" inside PVC box | material |  | 360 |  |
| Air release valve 1.5" inside PVC box | material |  | 360 |  |
| Extra flexible pressure compensating on surface inline dripline`s, O.D. is 16.1 mm | material |  | 3 |  |
| Electrical Solenoid Valve ( 1.5") inside PVC box | material |  | 288 |  |
| Electrical Solenoid Valve ( 2") inside PVC box | material |  | 360 |  |
| Quick coupling valve 1" inside a round valve box 10" size with a manual gate valve, hose swivel and key with all accessories | material |  | 600 |  |
| Advanced Irrigation controller subject to client approval, can connect with Centarl Control system | material |  | 6000 |  |
| Decoder cables 12 AWG between valves and controllers, The cables shall be pulled through 32Ø UPVC conduit | material |  | 2.4 |  |
| Preparing the irrigation program for the entire system and providing technical services for monitoring and controlling the central irrigation systems | material |  | 7200 |  |
| Excavation for Trench size 40cm wide and 80cm deep (for 1 cable) | material |  | 8.2 |  |
| Excavation for Trench Size 60cm wide and 80cm deep (for 2 cables) | material |  | 8.2 |  |
| Excavation for Trench Size 90cm wide and 80cm deep (for 3 cables) | material |  | 8.2 |  |
| Excavation for Trench Size 180cm wide and 80cm deep (for 6 cables) | material |  | 8.2 |  |
| Excavation for Trench Size 210 cm wide and 80cm deep (for 7 cables) | material |  | 8.2 |  |
| Excavation for Trench Size 240cm wide and 80cm deep (for 8 cables) | material |  | 8.2 |  |
| Duct bank for (33) cables | material |  | 432.6 |  |
| Duct bank for (21) cables | material |  | 287.6 |  |
| Duct bank for (15) cables | material |  | 215.4 |  |
| HV Cable Road Crossing | material |  | 124.6 |  |
| Road crossing ducts, 2 ways (2 x 150mm HDPE) | material |  | 49.2 |  |
| Road crossing ducts, 2 ways (2 x 110mm UPVC) | material |  | 30.8 |  |
| Road crossing ducts, 3 ways (3 x 110mm UPVC) | material |  | 44 |  |
| 4C-300mm2 CU/XLPE / PVC ARMORED CABLE | material |  | 182.8 |  |
| 4C-240mm2 CU/XLPE / PVC ARMORED CABLE | material |  | 149.2 |  |
| 4C-185mm2 CU/XLPE / PVC ARMORED CABLE | material |  | 115.2 |  |
| 4C-50mm2 CU/XLPE / PVC ARMORED CABLE | material |  | 33.6 |  |
| 4C-16mm2 CU/XLPE / PVC ARMORED CABLE | material |  | 11.8 |  |
| 4C-16MM2 CU/XLPE / PVC CABLE | material |  | 10.8 |  |
| 1Cx150sq.mm2,Cu, PVC wire | material |  | 21 |  |
| 1Cx120sq.mm2,Cu, PVC wire | material |  | 17.4 |  |
| 1Cx95sq.mm,Cu, PVC wire | material |  | 14 |  |
| 1Cx70sq.mm2,Cu, PVC wire | material |  | 10.4 |  |
| 1Cx25sq.mm2,Cu, PVC wire | material |  | 4.2 |  |
| 1Cx16sq.mm2,Cu, PVC wire | material |  | 2 |  |
| 1Cx10sq.mm2,Cu, PVC wire | material |  | 1.6 |  |
| Supply and installation of KWH meter mounting frame including concrete block for installation of KWH meter | material |  | 363.6 |  |
| Lighting poles with 1 arm, height of (12) meters, including the power distribution box, cables, and RCC foundation. | material |  | 729.2 |  |
| Lighting poles with 2 arms, height of (12) meters, including the power distribution box, cables, and RCC foundation. | material |  | 874.2 |  |
| Street Lighting( LED) Luminaire of Output ? 20,965 lumen complete with control gear and lamp, (129.1) WATT. | material |  | 118.8 |  |
| Including earthing of lighting poles, masts, feeder pillars, unit substations and LV feeders. | material |  | 34.8 |  |
| Street Lighting panels LCP (01) | material |  | 4792.2 |  |
| 2-ways ducts, 50mm diameter | material |  | 10.6 |  |
| 6-ways ducts, 110mm diameter | material |  | 15.2 |  |
| 9-ways ducts, 6 x 160mm & 2 x 100mm | material |  | 59.8 |  |
| 6 PVC ducts 150x200 mm (60mm diameter) | material |  | 9.6 |  |
| 6 PVC ducts 600x800 mm (120mm diameter) | material |  | 49.6 |  |
| 6 PVC ducts 800x800 mm (170mm diameter) | material |  | 50.4 |  |
| Manhole Type 2 (1600 x 1600 x 2000) | material |  | 983.4 |  |
| Manhole Type 3 (1200 x 1200 x 2000) | material |  | 928.2 |  |
| 6 PVC ducts 200x150 mm (60mm diameter) | material |  | 22.4 |  |
| 2-ways ducts, 50mm diameter | material |  | 11.8 |  |
| 60mm thick | material |  | 13.2 |  |
| 80mm thick | material |  | 17.6 |  |
| Precast Concrete Curbstone 150X300X900 Type (K1-A) | material |  | 9.6 |  |
| Precast Concrete Curbstone 100X200X500 Type (K4) | material |  | 9.6 |  |
| Precast Concrete Curbstone 150X300X500 Type (K1-B) | material |  | 9.6 |  |
| Precast Concrete Curbstone Type (K1-C) | material |  | 9.6 |  |
| Flush Kerb Type (D) | material |  | 9.6 |  |
| Traffic signs, ground mounted, Sheet Aluminum, (breakaway) Single post IPE, with all accessories | material |  | 192 |  |
| Precast Concrete Blister Warning Tactile Paver Brown Finish 300*300*60mm | material |  | 36 |  |
| Retroreflective Thermoplastic White Traffic lines | material |  | 8.4 |  |
| Retroreflective Thermoplastic Yellow, Traffic lines | material |  | 8.4 |  |
| Depth Between 0m to 1.50m | material |  | 86.8 |  |
| Depth Between 1.50m to 2.50m | material |  | 99 |  |
| Depth > 2.50m | material |  | 111.2 |  |
| 3-outlet fire hydrant (2 x 2.5 inch and 1 x 4.5 inch) in the form of a separate dry vacuum cylinder, complete according to drawings. | material |  | 2280 |  |
| MH depth 1.5 - 2.5m | material |  | 7929.45 |  |
| MH depth 2.5 - 3.5m | material |  | 11349.8 |  |
| MH depth > 3.50m | material |  |  |  |
| MH depth 2.5 -3.5m | material |  | 14652.9 |  |
| MH depth > 3.50m | material |  | 17227 |  |
| Price | material | SAR | 1 |  |
| Finished grouted riprap for Pond 300mm as per drawings | material |  | 3.6 |  |
| Finished grouted riprap for Pond 300mm as per drawings | material |  | 24 |  |
| Subgrade | material |  | 9.8 |  |
| Aggregate base course | material |  | 20.2 |  |
| Bituminous base course (Grading I - Class A), including Prime Coat (MC1) | material |  | 122.4 |  |
| Bituminous concrete wearing course, (Grading I - Class A), including tack coat (RC2) | material |  | 123.6 |  |
| Finished grouted riprap for Pond 300mm as per drawings | material |  | 80.4 |  |
| Glass Fused Bolted (GLS) 1500 m3 Tank with associated accessories & manufacturer recommendation for the foundation | material |  | 18452.8 |  |
| Finished grouted riprap for Pond 300mm as per drawings | material |  | 12 |  |
| pipe line O.D 32 mm PN 10, in depth 0 to 1.5 m | material |  | 3 |  |
| pipe line O.D 40 mm PN 10, in depth 0 to 1.5 m | material |  | 4.2 |  |
| pipe line O.D 50 mm PN 10, in depth 0 to 1.5 m | material |  | 6 |  |
| Gate valve 50 mm PN16 | material |  | 144 |  |
| Direct Burried Gate valve 40 mm PN16 | material |  | 144 |  |
| Pressure–compensating bubblers 110 Lit/Hr | material |  | 1.7 |  |
| Flushing Bronze gate valve dia 1.5" inside PVC box | material |  | 180 |  |
| Air release valve 1.5" inside PVC box | material |  | 180 |  |
| Extra flexible pressure compensating on surface inline dripline`s, O.D. is 16.1 mm | material |  | 1.5 |  |
| Electrical Solenoid Valve ( 1.5") inside PVC box | material |  | 144 |  |
| Electrical Solenoid Valve ( 2") inside PVC box | material |  | 180 |  |
| Quick coupling valve 1" inside a round valve box 10" size with a manual gate valve, hose swivel and key with all accessories | material |  | 300 |  |
| Advanced Irrigation controller subject to client approval, can connect with Centarl Control system | material |  | 3000 |  |
| Decoder cables 12 AWG between valves and controllers, The cables shall be pulled through 32Ø UPVC conduit | material |  | 1.2 |  |
| Preparing the irrigation program for the entire system and providing technical services for monitoring and controlling the central irrigation systems | material |  | 3600 |  |
| 100 mm thickness lean concrete under the foundation | material |  | 42 |  |
| Foundation | material |  | 90 |  |
| Slab on Grade | material |  | 78 |  |
| Walls | material |  | 156 |  |
| Beams | material |  | 168 |  |
| Columns | material |  | 180 |  |
| Slabs | material |  | 132 |  |
| Lightweight Concrete Roof insulation as per Architect's specification | material |  | 5.4 |  |
| Common brickwork. 300mm thick; vertical straight wall complete with accessories. | material |  | 14.4 |  |
| Insulated brickwork. with expanded polystyrene 200mm thick; vertical straight wall complete with accessories . | material |  | 13.2 |  |
| Common brickwork. 150mm thick; vertical straight wall complete with accessories. | material |  | 10.8 |  |
| Two Layers of Bituminous Coating | material |  | 1.2 |  |
| 20x20 Approved Polysulfide Joint Sealant | material |  | 2.4 |  |
| 2 perpendicular layers of cold bitumen coats | material |  | 1.2 |  |
| 2 layer of 4mm HDPE membrane, 2 perpendicular layers cold bitumen coats | material |  | 6 |  |
| 1 layer EPOXY Paint 300 micron | material |  | 7.2 |  |
| Membrane fully bonded to prime deck and upstand | material |  | 5.4 |  |
| Geotextile Filter membrane uv resistance | material |  | 0.6 |  |
| 85mm thick thermal insulation | material |  | 3.6 |  |
| 1.5mm thick epdm waterproofing membrane | material |  | 2.4 |  |
| CW01 - 4500 mm width x 3700 mm height | material |  | 1698.3 |  |
| CW02 - 4500 mm width x 3700 mm height | material |  | 1698.4 |  |
| CW03 - 4500 mm width x 3700 mm height | material |  | 1698.4 |  |
| CW04 - 4500 mm width x 3700 mm height | material |  | 1698.4 |  |
| CW05 - 7500 mm width x 4250 mm height | material |  | 3251.3 |  |
| CW06 - 7500 mm width x 4250 mm height | material |  | 3251.3 |  |
| W01 - 1000 mm width x 2000 mm height | material |  | 204 |  |
| W02 - 2000 mm width x 2000 mm height | material |  | 408 |  |
| W03 - 2000 mm width x 1000 mm height | material |  | 204 |  |
| D2 - 900 mm x 2200 mm height temper door | material |  | 237.6 |  |
| D3 - 950 mm x 2000 mm height temper door | material |  | 228 |  |
| Supply and install 33mm thick Lexan cladding blue complete with necessary framings | material |  | 42 |  |
| Supply and install 50mm thick random cut stone cladding complete with 600m | material |  | 33.6 |  |
| Supply and install External plastering to walls and columns min. 15mm thick with cement mortar of specified grade including | material |  | 3.6 |  |
| Supply and install 2 coats of weatherproof paint at walls including one prime coat and | material |  | 4.2 |  |
| Supply and install 300*300mm terrazzo tiles with 150mm high skirting at perimeter with approv | material |  | 8.4 |  |
| Supply and install 300*300mm glazed ceramic wall tiles on cement mortar and including rough | material |  | 10.8 |  |
| Supply and install internal plastering and 2 coats of acrylic paint at walls includin | material |  | 3.6 |  |
| Supply and install 300*300mm glazed ceramic wall tiles on cement mortar and including rough and smooth p | material |  | 9.6 |  |
| Supply and install 600*600mm porcelain tiles with approved quality on 30 mm mortar inclu | material |  | 9.6 |  |
| Supply and install 12.5mm thk, gypsum board suspended ceiling including s | material |  | 9.6 |  |
| Guard room coping 350mm | material |  | 14.4 |  |
| Guard room coping 450mm | material |  | 19.2 |  |
| Stone coping 500mm | material |  | 21 |  |
| Stone coping 525mm | material |  | 21.6 |  |
| Supply and install MODON Signage with Logo Type 1 | material |  | 1200 |  |
| Supply and install MODON Signage Type 2 | material |  | 1200 |  |
| Supply and install "Triangle Style" signage | material |  | 240 |  |
| Office Chairs | material |  | 96 |  |
| Office Tables | material |  | 144 |  |
| Guard Stand | material |  | 600 |  |
| Magnetic Control Access barrier, Automatic Vehicular Barriers to be installed on ground with magnetic access | material |  | 2400 |  |
| Supply and install Hand Wash Basin with Water Tap, angle valve, P-trap connected to 50mm diameter s | material |  | 216 |  |
| Supply and install paper towel dispenser, surface mounted, satin finish stainless steel as per approv | material |  | 12 |  |
| Supply and install mirror, size 460*910mm as per approved sample including frames, backing and all accessories to complete. | material |  | 96 |  |
| Supply and install towel ring , surface mounted, satin finish stainless steel as per approved sample including accessories. | material |  | 12 |  |
| Kitchen sink with single bowl with hot/cold water mixer. | material |  | 168 |  |
| Supply and install Base mounted flush tank water Western water closet system with lid connected to 110mm soil pipe | material |  | 384 |  |
| Gate Valves | material |  | 84 |  |
| Slow Closing Valve | material |  | 84 |  |
| 1 meter length 10mm diameter Flexible Hose with insulated handle complete with fork support, index push, vacuum breaker | material |  | 7.2 |  |
| 50mm diameter | material |  | 7.2 |  |
| 75mm diameter | material |  | 9.6 |  |
| 80mm diameter | material |  | 10.8 |  |
| 100mm diameter | material |  | 11.4 |  |
| 110mm diameter | material |  | 12 |  |
| 13mm diameter | material |  | 2.4 |  |
| 15mm diameter | material |  | 3 |  |
| 20mm diameter | material |  | 3.6 |  |
| 25mm diameter | material |  | 4.8 |  |
| 32mm diameter | material |  | 6 |  |
| 40mm diameter | material |  | 7.2 |  |
| 50mm diameter | material |  | 7.8 |  |
| 13mm diameter | material |  | 3 |  |
| 20mm diameter | material |  | 3.6 |  |
| 25mm diameter | material |  | 4.2 |  |
| Isolation Valve Size 20 | material |  | 12 |  |
| Isolation Valve Size 25 | material |  | 14.4 |  |
| Isolation Valve Size 32 | material |  | 18 |  |
| Isolation Valve Size 40 | material |  | 18.6 |  |
| Isolation Valve Size 50 | material |  | 19.2 |  |
| 20 mm diameter spray head for cold water supply | material |  | 9 |  |
| Supply and install Electric Water Heater set with connection | material |  | 120 |  |
| Water meter complete with accessories. | material |  | 300 |  |
| Roof drain | material |  | 30 |  |
| Vent on a roof to exhaust air | material |  | 30 |  |
| Floor drain 100x80mm | material |  | 30 |  |
| Gully trap 300x300 mm | material |  | 360 |  |
| inspection chamber, size 800x900x1000 | material |  | 360 |  |
| Mini split actual capacity 2 Ton | material |  | 420 |  |
| Ducted split actual capacity 4 Ton | material |  | 720 |  |
| Supply, fabricate, install and testing factory fabricated metal ducts with flanges complete with supports, vanes, | material |  | 2.4 |  |
| Supplying, installation testing & commissioning of external insulation on ducts | material |  | 12 |  |
| Supply, fix, testing and commissioning of exhaust air/fresh air louvers of powder coated extruded aluminium construction. | material |  | 60 |  |
| Providing, fixing, testing and commissioning of powder coated extruded aluminum sections grills and diffusers with dampers. | material |  | 60 |  |
| Air Grills 150mm x150mm | material |  | 30 |  |
| Air Diffuser 600mm x 600mm | material |  | 42 |  |
| Supply, Installation & Testing of 2 hours Fire rated system for closing the openings between roo | material |  | 3000 |  |
| 4.5 KG CO2 Type Fire Extinguishers | material |  | 300 |  |
| 6 KG ABC Type Fire Extinguishers | material |  | 420 |  |
| Floor cleanout, size 75 mm diameter | material |  | 12 |  |
| Floor cleanout, size 110 mm diameter | material |  | 24 |  |
| GRP water tanks capacity of each 1000 liter complete with all fittings, all valves and concrete pad | material |  | 840 |  |
| Junction Box for lighting fixture | material |  | 12.3 |  |
| Trench excavation to receive 2 nos 50mm diameter PVC Conduit, sand bedding and embedded with sa | material |  | 5.6 |  |
| Supply, Install, fixings, testing and commissioning 80W LED Projector waterproof DJ effect light including c | material |  | 135.9 |  |
| Earth Pit | material |  | 19.2 |  |
| Grounding rod 20mmX3m | material |  | 19.1 |  |
| Grounding rod with Pit 20mmX3m | material |  | 38 |  |
| Earthing Bar | material |  | 99.8 |  |
| 120mm2 Tinned copper wire | material |  | 9.6 |  |
| Guard Room 1 | material |  | 396.8 |  |
| Guard Room 2 | material |  | 396.8 |  |
| Guard Room 3 | material |  | 396.8 |  |
| 30A, 2P AC Disconnect Switch | material |  | 67.5 |  |
| 20A Duplex Receptacle Floor Mounted | material |  | 68.4 |  |
| Twin Socket outlet | material |  | 29.7 |  |
| Twin Socket outlet, Weather Proof | material |  | 49.7 |  |
| Single gang Lighting switch | material |  | 25.2 |  |
| 2way Single gang Lighting switch | material |  | 30 |  |
| 36W LED linear Pendant lighting | material |  | 71.7 |  |
| 36W LED Emergency linear Pendant lighting | material |  | 98.8 |  |
| 13W recess mounted LED down light fitting | material |  | 38.8 |  |
| 13W recess emergency mounted LED down light fitting with 1.5 Hr Battery | material |  | 83.4 |  |
| 10.4W LED Exit light with 1.5 Hr Battery | material |  | 63 |  |
| 4mm2 Cu./FRLSZH Cable | material |  | 1.1 |  |
| 6mm2 Cu./FRLSZH Cable | material |  | 1.2 |  |
| IR Intrusion Detection System Quad Beams (Tx & Rx) (SL-350 QDM) | material |  | 1053.6 |  |
| Control cable | material |  | 1 |  |
| CAT6A cable | material |  | 0.5 |  |
| Field Equipment Cabinet enclosed outdoor complete with precast concrete footing, suitable for parame | material |  | 923.2 |  |
| Supply and install 800mm x 800mm x 800mm height concrete handhole with bituminous paint all aroun | material |  | 256.8 |  |
| 800mm depth minimum Trench excavation to receive 3 nos 50mm diameter PVC Conduit with spacer, sand bedding an | material |  | 6 |  |
| Hot dipped galvanized cable conduits for CAT6A cable and Control Cables embedded to wall | material |  | 9.4 |  |
| 8 Port Industrial PoE Switch 10/100BaseT (0 deg to +70 deg. Celsius) | material |  | 1089 |  |
| 06C Optical Fiber SM | material |  | 1.2 |  |
| 48C Optical Fiber SM | material |  | 3.4 |  |
| 48 Core Splice Closure | material |  | 130.6 |  |
| Boom Barrier at Security Guard Room | material |  | 1585 |  |
| Pedestrian turnstile at Security Guard Room | material |  | 3729.3 |  |
| Access Control Unit | material |  | 466.2 |  |
| Access Card Reader | material |  | 9.4 |  |
| Magnetic Lock | material |  | 93.3 |  |
| Break Glass | material |  | 37.4 |  |
| Exit Push button | material |  | 18.8 |  |
| Door Sensor | material |  | 18.8 |  |
| Biometrics Reader | material |  | 65.3 |  |
| Pole/Bollard mounted IP( PoE), Automatic Number Plate Recognition (ANPR, camera, 5MP,IP 66, IR illumin | material |  | 1856.3 |  |
| 12U rack dimension (W x H x L) 600 x 625 x 600 mm | material |  | 335.7 |  |
| 400V, 3PH, 60Hz lighting control panel (LCP-02) | material |  | 2396.1 |  |
| 38W, 230V, 1PH, 60Hz fence, led linear uplight lighting, IP66 | material |  | 68.4 |  |
| 4C-16mm2 CU/XLPE/PVC direct buried armored cable | material |  | 5.9 |  |
| 4C-10mm2 CU/XLPE/PVC direct buried armored cable | material |  | 5.4 |  |
| 16mm2 CU/PVC wire | material |  | 1.1 |  |
| 10mm2 CU/PVC wire | material |  | 0.9 |  |
| 4C-16mm2 CU/XLPE/PVC direct buried armored cable | material |  | 5.9 |  |
| 16mm2 CU/PVC wire | material |  | 1.1 |  |
| Fire Alarm Control panel with fire alarm zoning with Mimic panel with fire alarm zoning | material |  | 812.4 |  |
| Main Fire Alarm Control panel with fire alarm zoning with Mimic panel with fire alarm zoning | material |  | 812.4 |  |
| Supply and installation of the addressable manual call point with operation safety glass breaking and pushbutton | material |  | 24.6 |  |
| Supply and installation of the photoelectric heat & smoke detector with base | material |  | 36 |  |
| Sounder With Beacon | material |  | 24.6 |  |
| Addressable Control module for Sounders | material |  | 29.7 |  |
| Addressable Control module for HVAC System | material |  | 29.7 |  |
| Addressable Monitor module for HVAC System | material |  | 29.6 |  |
| 2C x 1.5 Sqm FR Rated Armored - Cable For Loop Wiring | material |  | 1.4 |  |
| DACT (Auto - Dailer) for 24x7 Civil Defence | material |  | 180 |  |
| Transmission Communication cable - Fiber Optics 12Core | material |  | 3.8 |  |
| Transmission Communication cable - Ethernet Cable | material |  | 0.6 |  |
| Supply, install to site and installation of power supply system for fire alarm control panel | material |  | 461.7 |  |
| Supply, install to site and installation of power cable | material |  | 1 |  |
| Fire Fighter’s Telephone Centre | material |  | 461.7 |  |
| Fireman’s Telephone Jack | material |  | 554 |  |
| Voice Command Center | material |  | 3.8 |  |
| Smart Card Printer | material |  | 6247.08 |  |
| Card Issue Work Station | material |  | 9995.06 |  |
| Photographic Camera with stand | material |  | 7496.63 |  |
| Interface modules with CCTV, Fire and other systems | material |  | 31733.2 |  |
| Gate valves Dia 50 mm | material |  | 1206 |  |
| Gate valves Dia 100 mm | material |  | 1447.2 |  |
| Gate valves Dia 150 mm | material |  | 1929.6 |  |
| Gate valves Dia 250 mm | material |  | 3376.8 |  |
| Air valves with Dia 50 mm | material |  | 6432 |  |
| Washout valve Dia 100 mm | material |  | 6432 |  |
| Flow meter chamber (1500x 2500 mm) | material |  | 16080 |  |
| Flow meter dia 100 mm | material |  | 20502 |  |
| Supply and installation of KWH meter mounting frame including concrete block for installation of KWH meter | material |  | 1218.06 |  |
| Depth Between 0m to 1.50m | material |  | 2.58 |  |
| Depth Between 1.50m to 2.50m | material |  | 3.18 |  |
| Depth > 2.50m | material |  | 3.78 |  |
| Depth Between 0m to 1.50m | material |  | 3.3 |  |
| Depth Between 0m to 1.50m | material |  | 3.42 |  |
| Depth Between 1.50m to 2.50m | material |  | 4.05 |  |
| Depth > 2.50m | material |  | 4.14 |  |
| Depth Between 0m to 1.50m | material |  | 4.26 |  |
| Depth Between 1.50m to 2.50m | material |  | 4.86 |  |
| Depth > 2.50m | material |  | 5.49 |  |
| Depth Between 0m to 1.50m | material |  | 5.58 |  |
| Depth Between 1.50m to 2.50m | material |  | 6.21 |  |
| Depth > 2.50m | material |  | 6.84 |  |
| Gate valves dia 50 mm | material |  | 54 |  |
| Gate valves dia 100 mm | material |  | 64.8 |  |
| Gate valves dia 150 mm | material |  | 86.4 |  |
| Gate valves dia 200 mm | material |  | 151.2 |  |
| Air valves with dia 50 mm | material |  | 288 |  |
| Washout valve dia 100 mm | material |  | 288 |  |
| Wash out chamber (2500x 2500mm) | material |  | 720 |  |
| Air valve chamber (1000x 1000 mm) | material |  | 468 |  |
| Flow meter chamber (1500x 3000 mm) | material |  | 720 |  |
| Flow meter dia 150 mm | material |  | 1260 |  |
| 100 mm thickness lean concrete under the foundation | material |  | 12.6 |  |
| Foundation | material |  | 27 |  |
| Walls | material |  | 46.8 |  |
| Beams | material |  | 50.4 |  |
| Columns | material |  | 54 |  |
| Common brickwork. 300mm thick; vertical straight wall complete with accessories. | material |  | 4.32 |  |
| Two Layers of Bituminous Coating | material |  | 0.36 |  |
| 20x20 Approved Polysulfide Joint Sealant | material |  | 0.72 |  |
| Supply and install 33mm thick Lexan cladding blue complete with necessary framings | material |  | 12.6 |  |
| Supply and install 50mm thick random cut stone cladding complete with 600m | material |  | 10.08 |  |
| Supply and install External plastering to walls and columns min. 15mm thick with cement mortar of specified grade including | material |  | 1.08 |  |
| Supply and install 2 coats of weatherproof paint at walls including one prime coat and | material |  | 1.26 |  |
| Guard room coping 350mm | material |  | 4.32 |  |
| Guard room coping 450mm | material |  | 5.76 |  |
| Stone coping 500mm | material |  | 6.3 |  |
| Stone coping 525mm | material |  | 6.48 |  |
| Supply and install MODON Signage with Logo Type 1 | material |  | 360 |  |
| Supply and install MODON Signage Type 2 | material |  | 360 |  |
| Supply and install "Triangle Style" signage | material |  | 72 |  |
| Junction Box for lighting fixture | material |  | 3.69 |  |
| Trench excavation to receive 2 nos 50mm diameter PVC Conduit, sand bedding and embedded with sa | material |  | 1.68 |  |
| Supply, Install, fixings, testing and commissioning 80W LED Projector waterproof DJ effect light including c | material |  | 40.77 |  |
| Earth Pit | material |  | 5.76 |  |
| Grounding rod 20mmX3m | material |  | 5.73 |  |
| Grounding rod with Pit 20mmX3m | material |  | 11.4 |  |
| Earthing Bar | material |  | 29.94 |  |
| 120mm2 Tinned copper wire | material |  | 2.88 |  |
| IR Intrusion Detection System Quad Beams (Tx & Rx) (SL-350 QDM) | material |  | 316.08 |  |
| Control cable | material |  | 0.3 |  |
| CAT6A cable | material |  | 0.15 |  |
| Field Equipment Cabinet enclosed outdoor complete with precast concrete footing, suitable for parame | material |  | 276.96 |  |
| Supply and install 800mm x 800mm x 800mm height concrete handhole with bituminous paint all aroun | material |  | 77.04 |  |
| 800mm depth minimum Trench excavation to receive 3 nos 50mm diameter PVC Conduit with spacer, sand bedding an | material |  | 1.8 |  |
| Hot dipped galvanized cable conduits for CAT6A cable and Control Cables embedded to wall | material |  | 2.82 |  |
| 400V, 3PH, 60Hz lighting control panel (LCP-02) | material |  | 718.83 |  |
| 38W, 230V, 1PH, 60Hz fence, led linear uplight lighting, IP66 | material |  | 20.52 |  |
| 4C-16mm2 CU/XLPE/PVC direct buried armored cable | material |  | 1.77 |  |
| 4C-10mm2 CU/XLPE/PVC direct buried armored cable | material |  | 1.62 |  |
| 16mm2 CU/PVC wire | material |  | 0.33 |  |
| 10mm2 CU/PVC wire | material |  | 0.27 |  |
| 4C-16mm2 CU/XLPE/PVC direct buried armored cable | material |  | 1.77 |  |
| 16mm2 CU/PVC wire | material |  | 0.33 |  |
| Slab on Grade | material |  | 23.4 |  |
| Slabs | material |  | 39.6 |  |
| Lightweight Concrete Roof insulation as per Architect's specification | material |  | 1.62 |  |
| Insulated brickwork. with expanded polystyrene 200mm thick; vertical straight wall complete with accessories . | material |  | 3.96 |  |
| Common brickwork. 150mm thick; vertical straight wall complete with accessories. | material |  | 3.24 |  |
| 2 perpendicular layers of cold bitumen coats | material |  | 0.36 |  |
| 2 layer of 4mm HDPE membrane, 2 perpendicular layers cold bitumen coats | material |  | 1.8 |  |
| 1 layer EPOXY Paint 300 micron | material |  | 2.16 |  |
| Membrane fully bonded to prime deck and upstand | material |  | 1.62 |  |
| Geotextile Filter membrane uv resistance | material |  | 0.18 |  |
| 85mm thick thermal insulation | material |  | 1.08 |  |
| 1.5mm thick epdm waterproofing membrane | material |  | 0.72 |  |
| CW01 - 4500 mm width x 3700 mm height | material |  | 509.49 |  |
| CW02 - 4500 mm width x 3700 mm height | material |  | 509.52 |  |
| CW03 - 4500 mm width x 3700 mm height | material |  | 509.52 |  |
| CW04 - 4500 mm width x 3700 mm height | material |  | 509.52 |  |
| CW05 - 7500 mm width x 4250 mm height | material |  | 975.39 |  |
| CW06 - 7500 mm width x 4250 mm height | material |  | 975.39 |  |
| W01 - 1000 mm width x 2000 mm height | material |  | 61.2 |  |
| W02 - 2000 mm width x 2000 mm height | material |  | 122.4 |  |
| W03 - 2000 mm width x 1000 mm height | material |  | 61.2 |  |
| D2 - 900 mm x 2200 mm height temper door | material |  | 71.28 |  |
| D3 - 950 mm x 2000 mm height temper door | material |  | 68.4 |  |
| Supply and install 300*300mm terrazzo tiles with 150mm high skirting at perimeter with approv | material |  | 2.52 |  |
| Supply and install 300*300mm glazed ceramic wall tiles on cement mortar and including rough | material |  | 3.24 |  |
| Supply and install internal plastering and 2 coats of acrylic paint at walls includin | material |  | 1.08 |  |
| Supply and install 300*300mm glazed ceramic wall tiles on cement mortar and including rough and smooth p | material |  | 2.88 |  |
| Supply and install 600*600mm porcelain tiles with approved quality on 30 mm mortar inclu | material |  | 2.88 |  |
| Supply and install 12.5mm thk, gypsum board suspended ceiling including s | material |  | 2.88 |  |
| Office Chairs | material |  | 28.8 |  |
| Office Tables | material |  | 43.2 |  |
| Guard Stand | material |  | 180 |  |
| Magnetic Control Access barrier, Automatic Vehicular Barriers to be installed on ground with magnetic access | material |  | 720 |  |
| Supply and install Hand Wash Basin with Water Tap, angle valve, P-trap connected to 50mm diameter s | material |  | 64.8 |  |
| Supply and install paper towel dispenser, surface mounted, satin finish stainless steel as per approv | material |  | 3.6 |  |
| Supply and install mirror, size 460*910mm as per approved sample including frames, backing and all accessories to complete. | material |  | 28.8 |  |
| Supply and install towel ring , surface mounted, satin finish stainless steel as per approved sample including accessories. | material |  | 3.6 |  |
| Kitchen sink with single bowl with hot/cold water mixer. | material |  | 50.4 |  |
| Supply and install Base mounted flush tank water Western water closet system with lid connected to 110mm soil pipe | material |  | 115.2 |  |
| Gate Valves | material |  | 25.2 |  |
| Slow Closing Valve | material |  | 25.2 |  |
| 1 meter length 10mm diameter Flexible Hose with insulated handle complete with fork support, index push, vacuum breaker | material |  | 2.16 |  |
| 50mm diameter | material |  | 2.16 |  |
| 75mm diameter | material |  | 2.88 |  |
| 80mm diameter | material |  | 3.24 |  |
| 100mm diameter | material |  | 3.42 |  |
| 110mm diameter | material |  | 3.6 |  |
| 13mm diameter | material |  | 0.72 |  |
| 15mm diameter | material |  | 0.9 |  |
| 20mm diameter | material |  | 1.08 |  |
| 25mm diameter | material |  | 1.44 |  |
| 32mm diameter | material |  | 1.8 |  |
| 40mm diameter | material |  | 2.16 |  |
| 50mm diameter | material |  | 2.34 |  |
| 13mm diameter | material |  | 0.9 |  |
| 20mm diameter | material |  | 1.08 |  |
| 25mm diameter | material |  | 1.26 |  |
| Isolation Valve Size 20 | material |  | 3.6 |  |
| Isolation Valve Size 25 | material |  | 4.32 |  |
| Isolation Valve Size 32 | material |  | 5.4 |  |
| Isolation Valve Size 40 | material |  | 5.58 |  |
| Isolation Valve Size 50 | material |  | 5.76 |  |
| 20 mm diameter spray head for cold water supply | material |  | 2.7 |  |
| Supply and install Electric Water Heater set with connection | material |  | 36 |  |
| Water meter complete with accessories. | material |  | 90 |  |
| Roof drain | material |  | 9 |  |
| Vent on a roof to exhaust air | material |  | 9 |  |
| Floor drain 100x80mm | material |  | 9 |  |
| Gully trap 300x300 mm | material |  | 108 |  |
| inspection chamber, size 800x900x1000 | material |  | 108 |  |
| Mini split actual capacity 2 Ton | material |  | 126 |  |
| Ducted split actual capacity 4 Ton | material |  | 216 |  |
| Supply, fabricate, install and testing factory fabricated metal ducts with flanges complete with supports, vanes, | material |  | 0.72 |  |
| Supplying, installation testing & commissioning of external insulation on ducts | material |  | 3.6 |  |
| Supply, fix, testing and commissioning of exhaust air/fresh air louvers of powder coated extruded aluminium construction. | material |  | 18 |  |
| Providing, fixing, testing and commissioning of powder coated extruded aluminum sections grills and diffusers with dampers. | material |  | 18 |  |
| Air Grills 150mm x150mm | material |  | 9 |  |
| Air Diffuser 600mm x 600mm | material |  | 12.6 |  |
| Supply, Installation & Testing of 2 hours Fire rated system for closing the openings between roo | material |  | 900 |  |
| 4.5 KG CO2 Type Fire Extinguishers | material |  | 90 |  |
| 6 KG ABC Type Fire Extinguishers | material |  | 126 |  |
| Floor cleanout, size 75 mm diameter | material |  | 3.6 |  |
| Floor cleanout, size 110 mm diameter | material |  | 7.2 |  |
| GRP water tanks capacity of each 1000 liter complete with all fittings, all valves and concrete pad | material |  | 252 |  |
| Guard Room 1 | material |  | 119.04 |  |
| Guard Room 2 | material |  | 119.04 |  |
| Guard Room 3 | material |  | 119.04 |  |
| 30A, 2P AC Disconnect Switch | material |  | 20.25 |  |
| 20A Duplex Receptacle Floor Mounted | material |  | 20.52 |  |
| Twin Socket outlet | material |  | 8.91 |  |
| Twin Socket outlet, Weather Proof | material |  | 14.91 |  |
| Single gang Lighting switch | material |  | 7.56 |  |
| 2way Single gang Lighting switch | material |  | 9 |  |
| 36W LED linear Pendant lighting | material |  | 21.51 |  |
| 36W LED Emergency linear Pendant lighting | material |  | 29.64 |  |
| 13W recess mounted LED down light fitting | material |  | 11.64 |  |
| 13W recess emergency mounted LED down light fitting with 1.5 Hr Battery | material |  | 25.02 |  |
| 10.4W LED Exit light with 1.5 Hr Battery | material |  | 18.9 |  |
| 4mm2 Cu./FRLSZH Cable | material |  | 0.33 |  |
| 6mm2 Cu./FRLSZH Cable | material |  | 0.36 |  |
| 8 Port Industrial PoE Switch 10/100BaseT (0 deg to +70 deg. Celsius) | material |  | 326.7 |  |
| 06C Optical Fiber SM | material |  | 0.36 |  |
| 48C Optical Fiber SM | material |  | 1.02 |  |
| 48 Core Splice Closure | material |  | 39.18 |  |
| Boom Barrier at Security Guard Room | material |  | 475.5 |  |
| Pedestrian turnstile at Security Guard Room | material |  | 1118.79 |  |
| Access Control Unit | material |  | 139.86 |  |
| Access Card Reader | material |  | 2.82 |  |
| Magnetic Lock | material |  | 27.99 |  |
| Break Glass | material |  | 11.22 |  |
| Exit Push button | material |  | 5.64 |  |
| Door Sensor | material |  | 5.64 |  |
| Biometrics Reader | material |  | 19.59 |  |
| Pole/Bollard mounted IP( PoE), Automatic Number Plate Recognition (ANPR, camera, 5MP,IP 66, IR illumin | material |  | 556.89 |  |
| 12U rack dimension (W x H x L) 600 x 625 x 600 mm | material |  | 100.71 |  |
| Fire Alarm Control panel with fire alarm zoning with Mimic panel with fire alarm zoning | material |  | 243.72 |  |
| Main Fire Alarm Control panel with fire alarm zoning with Mimic panel with fire alarm zoning | material |  | 243.72 |  |
| Supply and installation of the addressable manual call point with operation safety glass breaking and pushbutton | material |  | 7.38 |  |
| Supply and installation of the photoelectric heat & smoke detector with base | material |  | 10.8 |  |
| Sounder With Beacon | material |  | 7.38 |  |
| Addressable Control module for Sounders | material |  | 8.91 |  |
| Addressable Control module for HVAC System | material |  | 8.91 |  |
| Addressable Monitor module for HVAC System | material |  | 8.88 |  |
| 2C x 1.5 Sqm FR Rated Armored - Cable For Loop Wiring | material |  | 0.42 |  |
| DACT (Auto - Dailer) for 24x7 Civil Defence | material |  | 54 |  |
| Transmission Communication cable - Fiber Optics 12Core | material |  | 1.14 |  |
| Transmission Communication cable - Ethernet Cable | material |  | 0.18 |  |
| Supply, install to site and installation of power supply system for fire alarm control panel | material |  | 138.51 |  |
| Supply, install to site and installation of power cable | material |  | 0.3 |  |
| Fire Fighter’s Telephone Centre | material |  | 138.51 |  |
| Fireman’s Telephone Jack | material |  | 166.2 |  |
| Voice Command Center | material |  | 1.14 |  |
| Glass Fused Bolted (GLS) 1500 m3 Tank with associated accessories & manufacturer recommendation for the foundation | material |  | 18452.8 |  |
| Glass Fused Bolted (GLS) 1500 m3 Tank with associated accessories & manufacturer recommendation for the foundation | material |  | 123019 |  |
| Glass Fused Bolted (GLS) 1500 m3 Tank with associated accessories & manufacturer recommendation for the foundation | material |  | 123019 |  |
| Slab on Grade | material |  | 156 |  |
| Slabs | material |  | 264 |  |
| Lightweight Concrete Roof insulation as per Architect's specification | material |  | 10.8 |  |
| Insulated brickwork. with expanded polystyrene 200mm thick; vertical straight wall complete with accessories . | material |  | 26.4 |  |
| Common brickwork. 150mm thick; vertical straight wall complete with accessories. | material |  | 21.6 |  |
| 2 perpendicular layers of cold bitumen coats | material |  | 2.4 |  |
| 2 layer of 4mm HDPE membrane, 2 perpendicular layers cold bitumen coats | material |  | 12 |  |
| 1 layer EPOXY Paint 300 micron | material |  | 14.4 |  |
| Membrane fully bonded to prime deck and upstand | material |  | 10.8 |  |
| Geotextile Filter membrane uv resistance | material |  | 1.2 |  |
| 85mm thick thermal insulation | material |  | 7.2 |  |
| 1.5mm thick epdm waterproofing membrane | material |  | 4.8 |  |
| CW01 - 4500 mm width x 3700 mm height | material |  | 3396.6 |  |
| CW02 - 4500 mm width x 3700 mm height | material |  | 3396.8 |  |
| CW03 - 4500 mm width x 3700 mm height | material |  | 3396.8 |  |
| CW04 - 4500 mm width x 3700 mm height | material |  | 3396.8 |  |
| CW05 - 7500 mm width x 4250 mm height | material |  | 6502.6 |  |
| CW06 - 7500 mm width x 4250 mm height | material |  | 6502.6 |  |
| W01 - 1000 mm width x 2000 mm height | material |  | 408 |  |
| W02 - 2000 mm width x 2000 mm height | material |  | 816 |  |
| W03 - 2000 mm width x 1000 mm height | material |  | 408 |  |
| D2 - 900 mm x 2200 mm height temper door | material |  | 475.2 |  |
| D3 - 950 mm x 2000 mm height temper door | material |  | 456 |  |
| Supply and install 300*300mm terrazzo tiles with 150mm high skirting at perimeter with approv | material |  | 16.8 |  |
| Supply and install 300*300mm glazed ceramic wall tiles on cement mortar and including rough | material |  | 21.6 |  |
| Supply and install internal plastering and 2 coats of acrylic paint at walls includin | material |  | 7.2 |  |
| Supply and install 300*300mm glazed ceramic wall tiles on cement mortar and including rough and smooth p | material |  | 19.2 |  |
| Supply and install 600*600mm porcelain tiles with approved quality on 30 mm mortar inclu | material |  | 19.2 |  |
| Supply and install 12.5mm thk, gypsum board suspended ceiling including s | material |  | 19.2 |  |
| Office Chairs | material |  | 192 |  |
| Office Tables | material |  | 288 |  |
| Guard Stand | material |  | 1200 |  |
| Magnetic Control Access barrier, Automatic Vehicular Barriers to be installed on ground with magnetic access | material |  | 4800 |  |
| Supply and install Hand Wash Basin with Water Tap, angle valve, P-trap connected to 50mm diameter s | material |  | 432 |  |
| Supply and install paper towel dispenser, surface mounted, satin finish stainless steel as per approv | material |  | 24 |  |
| Supply and install mirror, size 460*910mm as per approved sample including frames, backing and all accessories to complete. | material |  | 192 |  |
| Supply and install towel ring , surface mounted, satin finish stainless steel as per approved sample including accessories. | material |  | 24 |  |
| Kitchen sink with single bowl with hot/cold water mixer. | material |  | 336 |  |
| Supply and install Base mounted flush tank water Western water closet system with lid connected to 110mm soil pipe | material |  | 768 |  |
| Gate Valves | material |  | 168 |  |
| Slow Closing Valve | material |  | 168 |  |
| 1 meter length 10mm diameter Flexible Hose with insulated handle complete with fork support, index push, vacuum breaker | material |  | 14.4 |  |
| 50mm diameter | material |  | 14.4 |  |
| 75mm diameter | material |  | 19.2 |  |
| 80mm diameter | material |  | 21.6 |  |
| 100mm diameter | material |  | 22.8 |  |
| 110mm diameter | material |  | 24 |  |
| 13mm diameter | material |  | 4.8 |  |
| 15mm diameter | material |  | 6 |  |
| 20mm diameter | material |  | 7.2 |  |
| 25mm diameter | material |  | 9.6 |  |
| 32mm diameter | material |  | 12 |  |
| 40mm diameter | material |  | 14.4 |  |
| 50mm diameter | material |  | 15.6 |  |
| 13mm diameter | material |  | 6 |  |
| 20mm diameter | material |  | 7.2 |  |
| 25mm diameter | material |  | 8.4 |  |
| Isolation Valve Size 20 | material |  | 24 |  |
| Isolation Valve Size 25 | material |  | 28.8 |  |
| Isolation Valve Size 32 | material |  | 36 |  |
| Isolation Valve Size 40 | material |  | 37.2 |  |
| Isolation Valve Size 50 | material |  | 38.4 |  |
| 20 mm diameter spray head for cold water supply | material |  | 18 |  |
| Supply and install Electric Water Heater set with connection | material |  | 240 |  |
| Water meter complete with accessories. | material |  | 600 |  |
| Roof drain | material |  | 60 |  |
| Vent on a roof to exhaust air | material |  | 60 |  |
| Floor drain 100x80mm | material |  | 60 |  |
| Gully trap 300x300 mm | material |  | 720 |  |
| inspection chamber, size 800x900x1000 | material |  | 720 |  |
| Mini split actual capacity 2 Ton | material |  | 840 |  |
| Ducted split actual capacity 4 Ton | material |  | 1440 |  |
| Supply, fabricate, install and testing factory fabricated metal ducts with flanges complete with supports, vanes, | material |  | 4.8 |  |
| Supplying, installation testing & commissioning of external insulation on ducts | material |  | 24 |  |
| Supply, fix, testing and commissioning of exhaust air/fresh air louvers of powder coated extruded aluminium construction. | material |  | 120 |  |
| Providing, fixing, testing and commissioning of powder coated extruded aluminum sections grills and diffusers with dampers. | material |  | 120 |  |
| Air Grills 150mm x150mm | material |  | 60 |  |
| Air Diffuser 600mm x 600mm | material |  | 84 |  |
| Supply, Installation & Testing of 2 hours Fire rated system for closing the openings between roo | material |  | 6000 |  |
| 4.5 KG CO2 Type Fire Extinguishers | material |  | 600 |  |
| 6 KG ABC Type Fire Extinguishers | material |  | 840 |  |
| Floor cleanout, size 75 mm diameter | material |  | 24 |  |
| Floor cleanout, size 110 mm diameter | material |  | 48 |  |
| GRP water tanks capacity of each 1000 liter complete with all fittings, all valves and concrete pad | material |  | 1680 |  |
| Guard Room 1 | material |  | 793.6 |  |
| Guard Room 2 | material |  | 793.6 |  |
| Guard Room 3 | material |  | 793.6 |  |
| 30A, 2P AC Disconnect Switch | material |  | 135 |  |
| 20A Duplex Receptacle Floor Mounted | material |  | 136.8 |  |
| Twin Socket outlet | material |  | 59.4 |  |
| Twin Socket outlet, Weather Proof | material |  | 99.4 |  |
| Single gang Lighting switch | material |  | 50.4 |  |
| 2way Single gang Lighting switch | material |  | 60 |  |
| 36W LED linear Pendant lighting | material |  | 143.4 |  |
| 36W LED Emergency linear Pendant lighting | material |  | 197.6 |  |
| 13W recess mounted LED down light fitting | material |  | 77.6 |  |
| 13W recess emergency mounted LED down light fitting with 1.5 Hr Battery | material |  | 166.8 |  |
| 10.4W LED Exit light with 1.5 Hr Battery | material |  | 126 |  |
| 4mm2 Cu./FRLSZH Cable | material |  | 2.2 |  |
| 6mm2 Cu./FRLSZH Cable | material |  | 2.4 |  |
| 8 Port Industrial PoE Switch 10/100BaseT (0 deg to +70 deg. Celsius) | material |  | 2178 |  |
| 06C Optical Fiber SM | material |  | 2.4 |  |
| 48C Optical Fiber SM | material |  | 6.8 |  |
| 48 Core Splice Closure | material |  | 261.2 |  |
| Boom Barrier at Security Guard Room | material |  | 3170 |  |
| Pedestrian turnstile at Security Guard Room | material |  | 7458.6 |  |
| Access Control Unit | material |  | 932.4 |  |
| Access Card Reader | material |  | 18.8 |  |
| Magnetic Lock | material |  | 186.6 |  |
| Break Glass | material |  | 74.8 |  |
| Exit Push button | material |  | 37.6 |  |
| Door Sensor | material |  | 37.6 |  |
| Biometrics Reader | material |  | 130.6 |  |
| Pole/Bollard mounted IP( PoE), Automatic Number Plate Recognition (ANPR, camera, 5MP,IP 66, IR illumin | material |  | 3712.6 |  |
| 12U rack dimension (W x H x L) 600 x 625 x 600 mm | material |  | 671.4 |  |
| Fire Alarm Control panel with fire alarm zoning with Mimic panel with fire alarm zoning | material |  | 1624.8 |  |
| Main Fire Alarm Control panel with fire alarm zoning with Mimic panel with fire alarm zoning | material |  | 1624.8 |  |
| Supply and installation of the addressable manual call point with operation safety glass breaking and pushbutton | material |  | 49.2 |  |
| Supply and installation of the photoelectric heat & smoke detector with base | material |  | 72 |  |
| Sounder With Beacon | material |  | 49.2 |  |
| Addressable Control module for Sounders | material |  | 59.4 |  |
| Addressable Control module for HVAC System | material |  | 59.4 |  |
| Addressable Monitor module for HVAC System | material |  | 59.2 |  |
| 2C x 1.5 Sqm FR Rated Armored - Cable For Loop Wiring | material |  | 2.8 |  |
| DACT (Auto - Dailer) for 24x7 Civil Defence | material |  | 360 |  |
| Transmission Communication cable - Fiber Optics 12Core | material |  | 7.6 |  |
| Transmission Communication cable - Ethernet Cable | material |  | 1.2 |  |
| Supply, install to site and installation of power supply system for fire alarm control panel | material |  | 923.4 |  |
| Supply, install to site and installation of power cable | material |  | 2 |  |
| Fire Fighter’s Telephone Centre | material |  | 923.4 |  |
| Fireman’s Telephone Jack | material |  | 1108 |  |
| Voice Command Center | material |  | 7.6 |  |
| 100 mm thickness lean concrete under the foundation | material |  | 84 |  |
| Foundation | material |  | 180 |  |
| Walls | material |  | 312 |  |
| Beams | material |  | 336 |  |
| Columns | material |  | 360 |  |
| Common brickwork. 300mm thick; vertical straight wall complete with accessories. | material |  | 28.8 |  |
| Two Layers of Bituminous Coating | material |  | 2.4 |  |
| 20x20 Approved Polysulfide Joint Sealant | material |  | 4.8 |  |
| Supply and install 33mm thick Lexan cladding blue complete with necessary framings | material |  | 84 |  |
| Supply and install 50mm thick random cut stone cladding complete with 600m | material |  | 67.2 |  |
| Supply and install External plastering to walls and columns min. 15mm thick with cement mortar of specified grade including | material |  | 7.2 |  |
| Supply and install 2 coats of weatherproof paint at walls including one prime coat and | material |  | 8.4 |  |
| Guard room coping 350mm | material |  | 28.8 |  |
| Guard room coping 450mm | material |  | 38.4 |  |
| Stone coping 500mm | material |  | 42 |  |
| Stone coping 525mm | material |  | 43.2 |  |
| Supply and install MODON Signage with Logo Type 1 | material |  | 2400 |  |
| Supply and install MODON Signage Type 2 | material |  | 2400 |  |
| Supply and install "Triangle Style" signage | material |  | 480 |  |
| Junction Box for lighting fixture | material |  | 24.6 |  |
| Trench excavation to receive 2 nos 50mm diameter PVC Conduit, sand bedding and embedded with sa | material |  | 11.2 |  |
| Supply, Install, fixings, testing and commissioning 80W LED Projector waterproof DJ effect light including c | material |  | 271.8 |  |
| Earth Pit | material |  | 38.4 |  |
| Grounding rod 20mmX3m | material |  | 38.2 |  |
| Grounding rod with Pit 20mmX3m | material |  | 76 |  |
| Earthing Bar | material |  | 199.6 |  |
| 120mm2 Tinned copper wire | material |  | 19.2 |  |
| IR Intrusion Detection System Quad Beams (Tx & Rx) (SL-350 QDM) | material |  | 2107.2 |  |
| Control cable | material |  | 2 |  |
| CAT6A cable | material |  | 1 |  |
| Field Equipment Cabinet enclosed outdoor complete with precast concrete footing, suitable for parame | material |  | 1846.4 |  |
| Supply and install 800mm x 800mm x 800mm height concrete handhole with bituminous paint all aroun | material |  | 513.6 |  |
| 800mm depth minimum Trench excavation to receive 3 nos 50mm diameter PVC Conduit with spacer, sand bedding an | material |  | 12 |  |
| Hot dipped galvanized cable conduits for CAT6A cable and Control Cables embedded to wall | material |  | 18.8 |  |
| 400V, 3PH, 60Hz lighting control panel (LCP-02) | material |  | 4792.2 |  |
| 38W, 230V, 1PH, 60Hz fence, led linear uplight lighting, IP66 | material |  | 136.8 |  |
| 4C-16mm2 CU/XLPE/PVC direct buried armored cable | material |  | 11.8 |  |
| 4C-10mm2 CU/XLPE/PVC direct buried armored cable | material |  | 10.8 |  |
| 16mm2 CU/PVC wire | material |  | 2.2 |  |
| 10mm2 CU/PVC wire | material |  | 1.8 |  |
| 4C-16mm2 CU/XLPE/PVC direct buried armored cable | material |  | 11.8 |  |
| 16mm2 CU/PVC wire | material |  | 2.2 |  |
| Depth Between 0m to 1.50m | material |  | 17.2 |  |
| Depth Between 1.50m to 2.50m | material |  | 21.2 |  |
| Depth > 2.50m | material |  | 25.2 |  |
| Depth Between 0m to 1.50m | material |  | 22 |  |
| Depth Between 0m to 1.50m | material |  | 22.8 |  |
| Depth Between 1.50m to 2.50m | material |  | 27 |  |
| Depth > 2.50m | material |  | 27.6 |  |
| Depth Between 0m to 1.50m | material |  | 28.4 |  |
| Depth Between 1.50m to 2.50m | material |  | 32.4 |  |
| Depth > 2.50m | material |  | 36.6 |  |
| Depth Between 0m to 1.50m | material |  | 37.2 |  |
| Depth Between 1.50m to 2.50m | material |  | 41.4 |  |
| Depth > 2.50m | material |  | 45.6 |  |
| Gate valves dia 50 mm | material |  | 360 |  |
| Gate valves dia 100 mm | material |  | 432 |  |
| Gate valves dia 150 mm | material |  | 576 |  |
| Gate valves dia 200 mm | material |  | 1008 |  |
| Air valves with dia 50 mm | material |  | 1920 |  |
| Washout valve dia 100 mm | material |  | 1920 |  |
| Wash out chamber (2500x 2500mm) | material |  | 4800 |  |
| Air valve chamber (1000x 1000 mm) | material |  | 3120 |  |
| Flow meter chamber (1500x 3000 mm) | material |  | 4800 |  |
| Flow meter dia 150 mm | material |  | 8400 |  |
| Pressure–compensating bubblers 110 Lit/Hr | material |  | 11.39 |  |
| Depth Between 0m to 1.50m | material |  | 57.62 |  |
| Depth Between 1.50m to 2.50m | material |  | 71.02 |  |
| Depth > 2.50m | material |  | 84.42 |  |
| Depth Between 0m to 1.50m | material |  | 73.7 |  |
| Depth Between 0m to 1.50m | material |  | 76.38 |  |
| Depth Between 1.50m to 2.50m | material |  | 90.45 |  |
| Depth > 2.50m | material |  | 92.46 |  |
| Depth Between 0m to 1.50m | material |  | 95.14 |  |
| Depth Between 1.50m to 2.50m | material |  | 108.54 |  |
| Depth > 2.50m | material |  | 122.61 |  |
| Depth Between 0m to 1.50m | material |  | 124.62 |  |
| Depth Between 1.50m to 2.50m | material |  | 138.69 |  |
| Depth > 2.50m | material |  | 152.76 |  |
| Gate valves dia 50 mm | material |  | 1206 |  |
| Gate valves dia 100 mm | material |  | 1447.2 |  |
| Gate valves dia 150 mm | material |  | 1929.6 |  |
| Gate valves dia 200 mm | material |  | 3376.8 |  |
| Air valves with dia 50 mm | material |  | 6432 |  |
| Washout valve dia 100 mm | material |  | 6432 |  |
| Flow meter dia 150 mm | material |  | 28140 |  |
| Wash out chamber (2500x 2500mm) | material |  | 16080 |  |
| Air valve chamber (1000x 1000 mm) | material |  | 10452 |  |
| Flow meter chamber (1500x 3000 mm) | material |  | 16080 |  |
| 100 mm thickness lean concrete under the foundation | material |  | 281.4 |  |
| Carpenter | labor |  |  | ï»? |
| Steel Fixer | labor |  |  |  |
| Foundation | material |  | 603 |  |
| Slab on Grade | material |  | 522.6 |  |
| Walls | material |  | 1045.2 |  |
| Columns | material |  | 1206 |  |
| Beams | material |  | 1125.6 |  |
| Slabs | material |  | 884.4 |  |
| Lightweight Concrete Roof insulation as per Architect's specification | material |  | 36.18 |  |
| Common brickwork. 300mm thick; vertical straight wall complete with accessories. | material |  | 96.48 |  |
| Insulated brickwork. with expanded polystyrene 200mm thick; vertical straight wall complete with accessories . | material |  | 88.44 |  |
| Common brickwork. 150mm thick; vertical straight wall complete with accessories. | material |  | 72.36 |  |
| 2 perpendicular layers of cold bitumen coats | material |  | 8.04 |  |
| 2 layer of 4mm HDPE membrane, 2 perpendicular layers cold bitumen coats | material |  | 40.2 |  |
| 1 layer EPOXY Paint 300 micron | material |  | 48.24 |  |
| Membrane fully bonded to prime deck and upstand | material |  | 36.18 |  |
| Geotextile Filter membrane uv resistance | material |  | 4.02 |  |
| 85mm thick thermal insulation | material |  | 24.12 |  |
| 1.5mm thick epdm waterproofing membrane | material |  | 16.08 |  |
| CW01 - 4500 mm width x 3700 mm height | material |  | 11378.6 |  |
| CW02 - 4500 mm width x 3700 mm height | material |  | 11379.3 |  |
| CW03 - 4500 mm width x 3700 mm height | material |  | 11379.3 |  |
| CW04 - 4500 mm width x 3700 mm height | material |  | 11379.3 |  |
| CW05 - 7500 mm width x 4250 mm height | material |  | 21783.7 |  |
| CW06 - 7500 mm width x 4250 mm height | material |  | 21783.7 |  |
| W01 - 1000 mm width x 2000 mm height | material |  | 1366.8 |  |
| W02 - 2000 mm width x 2000 mm height | material |  | 2733.6 |  |
| W03 - 2000 mm width x 1000 mm height | material |  | 1366.8 |  |
| D2 - 900 mm x 2200 mm height temper door | material |  | 1591.92 |  |
| D3 - 950 mm x 2000 mm height temper door | material |  | 1527.6 |  |
| Supply and install 300*300mm terrazzo tiles with 150mm high skirting at perimeter with approv | material |  | 56.28 |  |
| Supply and install 300*300mm glazed ceramic wall tiles on cement mortar and including rough | material |  | 72.36 |  |
| Supply and install internal plastering and 2 coats of acrylic paint at walls includin | material |  | 24.12 |  |
| Supply and install 300*300mm glazed ceramic wall tiles on cement mortar and including rough and smooth p | material |  | 64.32 |  |
| Supply and install 600*600mm porcelain tiles with approved quality on 30 mm mortar inclu | material |  | 64.32 |  |
| Supply and install 12.5mm thk, gypsum board suspended ceiling including s | material |  | 64.32 |  |
| Office Chairs | material |  | 643.2 |  |
| Office Tables | material |  | 964.8 |  |
| Guard Stand | material |  | 4020 |  |
| Supply and install Hand Wash Basin with Water Tap, angle valve, P-trap connected to 50mm diameter s | material |  | 1447.2 |  |
| Supply and install paper towel dispenser, surface mounted, satin finish stainless steel as per approv | material |  | 80.4 |  |
| Supply and install mirror, size 460*910mm as per approved sample including frames, backing and all accessories to complete. | material |  | 643.2 |  |
| Supply and install towel ring , surface mounted, satin finish stainless steel as per approved sample including accessories. | material |  | 80.4 |  |
| Kitchen sink with single bowl with hot/cold water mixer. | material |  | 1125.6 |  |
| 50mm diameter | material |  | 48.24 |  |
| 75mm diameter | material |  | 64.32 |  |
| 80mm diameter | material |  | 72.36 |  |
| 100mm diameter | material |  | 76.38 |  |
| 110mm diameter | material |  | 80.4 |  |
| Floor cleanout, size 75 mm diameter | material |  | 80.4 |  |
| Floor cleanout, size 110 mm diameter | material |  | 160.8 |  |
| Supply and install Base mounted flush tank water Western water closet system with lid connected to 110mm soil pipe | material |  | 2572.8 |  |
| Gate Valves | material |  | 562.8 |  |
| Slow Closing Valve | material |  | 562.8 |  |
| 1 meter length 10mm diameter Flexible Hose with insulated handle complete with fork support, index push, vacuum breaker | material |  | 48.24 |  |
| 13mm diameter | material |  | 16.08 |  |
| 15mm diameter | material |  | 20.1 |  |
| 20mm diameter | material |  | 24.12 |  |
| 25mm diameter | material |  | 32.16 |  |
| 32mm diameter | material |  | 40.2 |  |
| 40mm diameter | material |  | 48.24 |  |
| 50mm diameter | material |  | 52.26 |  |
| 13mm diameter | material |  | 20.1 |  |
| 20mm diameter | material |  | 24.12 |  |
| 25mm diameter | material |  | 28.14 |  |
| Isolation Valve Size 20 | material |  | 80.4 |  |
| Isolation Valve Size 25 | material |  | 96.48 |  |
| Isolation Valve Size 32 | material |  | 120.6 |  |
| Isolation Valve Size 40 | material |  | 124.62 |  |
| Isolation Valve Size 50 | material |  | 128.64 |  |
| 20 mm diameter spray head for cold water supply | material |  | 60.3 |  |
| Roof drain | material |  | 201 |  |
| Vent on a roof to exhaust air | material |  | 201 |  |
| Floor drain 100x80mm | material |  | 201 |  |
| Gully trap 300x300 mm | material |  | 2412 |  |
| inspection chamber, size 800x900x1000 | material |  | 2412 |  |
| Supply and install Electric Water Heater set with connection | material |  | 804 |  |
| Water meter complete with accessories. | material |  | 2010 |  |
| Mini split actual capacity 2 Ton | material |  | 2814 |  |
| Ducted split actual capacity 4 Ton | material |  | 4824 |  |
| Supply, fabricate, install and testing factory fabricated metal ducts with flanges complete with supports, vanes, | material |  | 16.08 |  |
| Supplying, installation testing & commissioning of external insulation on ducts | material |  | 80.4 |  |
| Supply, fix, testing and commissioning of exhaust air/fresh air louvers of powder coated extruded aluminium construction. | material |  | 402 |  |
| Providing, fixing, testing and commissioning of powder coated extruded aluminum sections grills and diffusers with dampers. | material |  | 402 |  |
| Air Grills 150mm x150mm | material |  | 201 |  |
| Air Diffuser 600mm x 600mm | material |  | 281.4 |  |
| Supply, Installation & Testing of 2 hours Fire rated system for closing the openings between roo | material |  | 20100 |  |
| 4.5 KG CO2 Type Fire Extinguishers | material |  | 2010 |  |
| 6 KG ABC Type Fire Extinguishers | material |  | 2814 |  |
| GRP water tanks capacity of each 1000 liter complete with all fittings, all valves and concrete pad | material |  | 5628 |  |
| Guard Room 1 | material |  | 2658.56 |  |
| Guard Room 2 | material |  | 2658.56 |  |
| Guard Room 3 | material |  | 2658.56 |  |
| 30A, 2P AC Disconnect Switch | material |  | 452.25 |  |
| 20A Duplex Receptacle Floor Mounted | material |  | 458.28 |  |
| Twin Socket outlet | material |  | 198.99 |  |
| Twin Socket outlet, Weather Proof | material |  | 332.99 |  |
| Single gang Lighting switch | material |  | 168.84 |  |
| 2way Single gang Lighting switch | material |  | 201 |  |
| 36W LED linear Pendant lighting | material |  | 480.39 |  |
| 36W LED Emergency linear Pendant lighting | material |  | 661.96 |  |
| 13W recess mounted LED down light fitting | material |  | 259.96 |  |
| 13W recess emergency mounted LED down light fitting with 1.5 Hr Battery | material |  | 558.78 |  |
| 10.4W LED Exit light with 1.5 Hr Battery | material |  | 422.1 |  |
| 4mm2 Cu./FRLSZH Cable | material |  | 7.37 |  |
| 6mm2 Cu./FRLSZH Cable | material |  | 8.04 |  |
| Fire Alarm Control panel with fire alarm zoning with Mimic panel with fire alarm zoning | material |  | 5443.08 |  |
| Main Fire Alarm Control panel with fire alarm zoning with Mimic panel with fire alarm zoning | material |  | 5443.08 |  |
| Supply and installation of the addressable manual call point with operation safety glass breaking and pushbutton | material |  | 164.82 |  |
| Supply and installation of the photoelectric heat & smoke detector with base | material |  | 241.2 |  |
| Sounder With Beacon | material |  | 164.82 |  |
| Addressable Control module for Sounders | material |  | 198.99 |  |
| Addressable Control module for HVAC System | material |  | 198.99 |  |
| Addressable Monitor module for HVAC System | material |  | 198.32 |  |
| 2C x 1.5 Sqm FR Rated Armored - Cable For Loop Wiring | material |  | 9.38 |  |
| DACT (Auto - Dailer) for 24x7 Civil Defence | material |  | 1206 |  |
| Transmission Communication cable - Fiber Optics 12Core | material |  | 25.46 |  |
| Transmission Communication cable - Ethernet Cable | material |  | 4.02 |  |
| Supply, install to site and installation of power cable | material |  | 6.7 |  |
| Fire Fighter’s Telephone Centre | material |  | 3093.39 |  |
| Fireman’s Telephone Jack | material |  | 3711.8 |  |
| Voice Command Center | material |  | 25.46 |  |
| Supply, install to site and installation of power supply system for fire alarm control panel | material |  | 3093.39 |  |
| Two Layers of Bituminous Coating | material |  | 8.04 |  |
| 20x20 Approved Polysulfide Joint Sealant | material |  | 16.08 |  |
| Supply and install 33mm thick Lexan cladding blue complete with necessary framings | material |  | 281.4 |  |
| Supply and install 50mm thick random cut stone cladding complete with 600m | material |  | 225.12 |  |
| Supply and install External plastering to walls and columns min. 15mm thick with cement mortar of specified grade including | material |  | 24.12 |  |
| Supply and install 2 coats of weatherproof paint at walls including one prime coat and | material |  | 28.14 |  |
| Guard room coping 350mm | material |  | 96.48 |  |
| Guard room coping 450mm | material |  | 128.64 |  |
| Stone coping 500mm | material |  | 140.7 |  |
| Stone coping 525mm | material |  | 144.72 |  |
| Supply and install MODON Signage with Logo Type 1 | material |  | 8040 |  |
| Supply and install MODON Signage Type 2 | material |  | 8040 |  |
| Supply and install "Triangle Style" signage | material |  | 1608 |  |
| Junction Box for lighting fixture | material |  | 82.41 |  |
| Trench excavation to receive 2 nos 50mm diameter PVC Conduit, sand bedding and embedded with sa | material |  | 37.52 |  |
| Supply, Install, fixings, testing and commissioning 80W LED Projector waterproof DJ effect light including c | material |  | 910.53 |  |
| Earth Pit | material |  | 128.64 |  |
| Grounding rod 20mmX3m | material |  | 127.97 |  |
| Grounding rod with Pit 20mmX3m | material |  | 254.6 |  |
| Earthing Bar | material |  | 668.66 |  |
| 120mm2 Tinned copper wire | material |  | 64.32 |  |
| IR Intrusion Detection System Quad Beams (Tx & Rx) (SL-350 QDM) | material |  | 7059.12 |  |
| Control cable | material |  | 6.7 |  |
| CAT6A cable | material |  | 3.35 |  |
| Supply and install 800mm x 800mm x 800mm height concrete handhole with bituminous paint all aroun | material |  | 1720.56 |  |
| 800mm depth minimum Trench excavation to receive 3 nos 50mm diameter PVC Conduit with spacer, sand bedding an | material |  | 40.2 |  |
| Hot dipped galvanized cable conduits for CAT6A cable and Control Cables embedded to wall | material |  | 62.98 |  |
| 400V, 3PH, 60Hz lighting control panel (LCP-02) | material |  | 16053.9 |  |
| Field Equipment Cabinet enclosed outdoor complete with precast concrete footing, suitable for parame | material |  | 6185.44 |  |
| 8 Port Industrial PoE Switch 10/100BaseT (0 deg to +70 deg. Celsius) | material |  | 7296.3 |  |
| 06C Optical Fiber SM | material |  | 8.04 |  |
| 48C Optical Fiber SM | material |  | 22.78 |  |
| 48 Core Splice Closure | material |  | 875.02 |  |
| Magnetic Control Access barrier, Automatic Vehicular Barriers to be installed on ground with magnetic access | material |  | 16080 |  |
| Boom Barrier at Security Guard Room | material |  | 10619.5 |  |
| Pedestrian turnstile at Security Guard Room | material |  | 24986.3 |  |
| Access Control Unit | material |  | 3123.54 |  |
| Access Card Reader | material |  | 62.98 |  |
| Magnetic Lock | material |  | 625.11 |  |
| Break Glass | material |  | 250.58 |  |
| Exit Push button | material |  | 125.96 |  |
| Door Sensor | material |  | 125.96 |  |
| Biometrics Reader | material |  | 437.51 |  |
| Pole/Bollard mounted IP( PoE), Automatic Number Plate Recognition (ANPR, camera, 5MP,IP 66, IR illumin | material |  | 12437.2 |  |
| 12U rack dimension (W x H x L) 600 x 625 x 600 mm | material |  | 2249.19 |  |
| 4C-16mm2 CU/XLPE/PVC direct buried armored cable | material |  | 39.53 |  |
| 4C-10mm2 CU/XLPE/PVC direct buried armored cable | material |  | 36.18 |  |
| 16mm2 CU/PVC wire | material |  | 7.37 |  |
| 10mm2 CU/PVC wire | material |  | 6.03 |  |
| 38W, 230V, 1PH, 60Hz fence, led linear uplight lighting, IP66 | material |  | 458.28 |  |
| 4C-16mm2 CU/XLPE/PVC direct buried armored cable | material |  | 39.53 |  |
| 16mm2 CU/PVC wire | material |  | 7.37 |  |
| Depth Between 0m to 1.50m | material |  | 8.6 |  |
| Depth Between 1.50m to 2.50m | material |  | 10.6 |  |
| Depth > 2.50m | material |  | 12.6 |  |
| Depth Between 0m to 1.50m | material |  | 11 |  |
| Depth Between 0m to 1.50m | material |  | 11.4 |  |
| Depth Between 1.50m to 2.50m | material |  | 13.5 |  |
| Depth > 2.50m | material |  | 13.8 |  |
| Depth Between 0m to 1.50m | material |  | 14.2 |  |
| Depth Between 1.50m to 2.50m | material |  | 16.2 |  |
| Depth > 2.50m | material |  | 18.3 |  |
| Depth Between 0m to 1.50m | material |  | 18.6 |  |
| Depth Between 1.50m to 2.50m | material |  | 20.7 |  |
| Depth > 2.50m | material |  | 22.8 |  |
| Gate valves dia 50 mm | material |  | 180 |  |
| Gate valves dia 100 mm | material |  | 216 |  |
| Gate valves dia 150 mm | material |  | 288 |  |
| Gate valves dia 200 mm | material |  | 504 |  |
| Air valves with dia 50 mm | material |  | 960 |  |
| Washout valve dia 100 mm | material |  | 960 |  |
| Wash out chamber (2500x 2500mm) | material |  | 2400 |  |
| Air valve chamber (1000x 1000 mm) | material |  | 1560 |  |
| Flow meter chamber (1500x 3000 mm) | material |  | 2400 |  |
| Flow meter dia 150 mm | material |  | 4200 |  |
| Glass Fused Bolted (GLS) 1500 m3 Tank with associated accessories & manufacturer recommendation for the foundation | material |  | 61509.4 |  |
| Glass Fused Bolted (GLS) 1500 m3 Tank with associated accessories & manufacturer recommendation for the foundation | material |  | 412113 |  |
| Glass Fused Bolted (GLS) 1500 m3 Tank with associated accessories & manufacturer recommendation for the foundation | material |  | 412113 |  |

## Schedule

| ID | WBS | Activity | Type | Duration | Start | Finish | Predecessors | Total float | Free float | Resources |
| --- | --- | --- | --- | --- | --- | --- | --- | --- | --- | --- |
|  | MS | **Key Milestones** |  |  | 2025-12-23 | 2027-02-22 |  |  |  |  |
|  | CM | **Contractual Milestones** |  |  | 2025-12-23 | 2027-02-22 |  |  |  |  |
| MS-CS-PS |  | Project Commencement Date ( Site Handover ) | milestone | 0d | 2025-12-23 | 2025-12-23 |  | 0d |  |  |
| MS-CF-EBL |  | Completion of Execution Plan and Baseline Schedule | milestone | 0d | 2026-01-22 | 2026-01-22 | PRE-CON-MDC-20 FF, PRE-CON-MDC-10 FF | 25d |  |  |
| MS-CF-ENG |  | Completion of Submitting and Approval of Shopdrwing and Material | milestone | 0d | 2026-01-22 | 2026-01-22 | PRE-CON-MDC-30 FF, PRE-CON-MDC-40 FF, PRE-CON-MDC-50 FF, PRE-CON-MDC-60 FF, PRE-CON-MDC-70 FF, PRE-CON-MDC-80 FF, ENG-SH-RD-A-110 FF, ENG-SH-HS-A-110 FF, ENG-SH-TSB-A-100 FF, ENG-SH-MRK-A-110 FF, ENG-SH-SW-ML-A-110 FF, ENG-SH-SD-ML-A-110 FF, ENG-SH-SD-CB-A-110 FF, ENG-SH-PW-ML-A-110 FF, ENG-SH-PW-FH-A-110 FF, ENG-SH-IR-ML-A-110 FF, ENG-SH-TSE-ML-A-120 FF, ENG-SH-MV-A-110 FF, ENG-SH-LV-A-120 FF, ENG-SH-SL-A-110 FF, ENG-SH-MSN-A-120 FF, ENG-SH-TE-A-110 FF, ENG-SH-CTV-A-110 FF, ENG-SH-SPS-A-160 FF, ENG-SH-LS-A-170 FF, ENG-SH-DPO-A-120 FF, ENG-SH-ST-A-180 FF, ENG-SH-GR-A-190 FF, ENG-SH-GR-A-200 FF, ENG-MT-RD-A-100 FF, ENG-MT-RD-A-110 FF, ENG-MT-RD-A-120 FF, ENG-MT-RD-A-130 FF, ENG-MT-RD-A-140 FF, ENG-MT-RD-A-150 FF, ENG-MT-TS-A-100 FF, ENG-MT-TS-A-110 FF, ENG-MT-IR-ML-A-140 FF, ENG-MT-IR-ML-A-150 FF, ENG-MT-SW-ML-A-100 FF, ENG-MT-SW-ML-A-110 FF, ENG-MT-SW-TF-A-100 FF, ENG-MT-SD-ML-A-100 FF, ENG-MT-SD-ML-A-110 FF, ENG-MT-SD-CB-A-100 FF, ENG-MT-SD-CB-A-110 FF, ENG-MT-SD-TF-A-100 FF, ENG-MT-SD-TF-A-110 FF, ENG-MT-PW-ML-A-100 FF, ENG-MT-PW-ML-A-110 FF, ENG-MT-PW-FH-A-100 FF, ENG-MT-PW-TF-A-100 FF, ENG-MT-IR-ML-A-100 FF, ENG-MT-IR-ML-A-110 FF, ENG-MT-IR-ML-A-120 FF, ENG-MT-IR-ML-A-130 FF, ENG-MT-MV-ML-A-100 FF, ENG-MT-MV-TF-A-100 FF, ENG-MT-SL-ML-A-100 FF, ENG-MT-SL-A-100 FF, ENG-MT-SL-A-110 FF, ENG-MT-SL-A-120 FF, ENG-MT-SL-DB-A-100 FF, ENG-MT-SL-TF-A-100 FF, ENG-MT-SL-ES-A-100 FF, ENG-MT-TE-A-100 FF, ENG-MT-TE-A-110 FF, ENG-MT-CTV-A-100 FF, ENG-MT-PS-CV-A-150 FF, ENG-MT-SLS-CV-A-110 FF, ENG-MT-DPO-CV-A-110 FF, ENG-MT-TSE-CV-A-140 FF, ENG-MT-GR-CV-A-130 FF, ENG-MT-FE-CV-A-120 FF, ENG-MT-PL-CV-A-160 FF, ENG-MT-CTV-A-110 FF, ENG-MT-SPS-MC-A-110 FF, ENG-MT-TSE-MC-A-120 FF | 25d |  |  |
| MS-CF-MOB |  | Completion of Mobilization and Site Preperation Works | milestone | 0d | 2026-02-21 | 2026-02-21 | MOB-30 FF, MOB-20 FF, MOB-80 FF, MOB-40 FF, MOB-50 FF, MOB-60 FF, MOB-10 FF, MOB-70 FF, PRE-CON-MDC-10 FF, PRE-CON-MDC-20 FF, PRE-CON-MDC-30 FF, PRE-CON-MDC-40 FF, PRE-CON-MDC-50 FF, PRE-CON-MDC-60 FF, PRE-CON-MDC-70 FF, PRE-CON-MDC-80 FF | 18d |  |  |
| MS-CF-SD |  | Completion of Construction Works for Storm Drainage Network | milestone | 0d | 2026-10-24 | 2026-10-24 | CO-SD-MH-TF-210 FF | 25d | 15d |  |
| MS-CF-SW |  | Completion of Construction Works for Sewage Network | milestone | 0d | 2026-10-24 | 2026-10-24 | CO-SW-TF-110 FF, CO-SW-TF-210 FF | 40d | 30d |  |
| MS-CF-MV |  | Completion of Construction Works for Medium Voltage Network | milestone | 0d | 2026-12-15 | 2026-12-15 | CO-MV-TF-220 FF | 10d |  |  |
| MS-CF-RD |  | Completion of Construction Works for Road Works | milestone | 0d | 2026-12-23 | 2026-12-23 | CO-RD-F-TS-120 FF, CO-RD-F-TS-110 FF, CO-RD-F-TS-100 FF | 49.75d |  |  |
| MS-CF-SL |  | Completion of Construction Works for Street Lighting Network | milestone | 0d | 2026-12-23 | 2026-12-23 | CO-SL-TF-230 FF, CO-SL-TF-220 FF | 19d |  |  |
| MS-CF-TE |  | Completion of Construction Works for Telecom Network | milestone | 0d | 2026-12-23 | 2026-12-23 | CO-TE-CTV-TF-140 FF | 19d |  |  |
| MS-CF-IR |  | Completion of Construction Works for Irrigation Network | milestone | 0d | 2026-12-27 | 2026-12-27 | CO-IR-TF-160 FF | 33d |  |  |
| MS-CF-PW |  | Completion of Construction Works for Potable Water Network | milestone | 0d | 2026-12-27 | 2026-12-27 | CO-PW-TF-120 FF, CO-UB-IRT-250 FF, CO-PW-TF-100 FF | 33d |  |  |
| MS-CF-TSE |  | Completion of Construction Works for Treated Sewage Effluent Network | milestone | 0d | 2026-12-27 | 2026-12-27 | CO-TSE-TF-170 FF | 33d |  |  |
| MS-CF-PF |  | Project Completion Date | milestone | 0d | 2027-02-22 | 2027-02-22 | A1100 FF, CO-SD-PO-110-P2 FF, MS-CF-PW FF, MS-CF-IR FF, MS-CF-SW FF, MS-CF-SD FF, MS-CF-TSE FF, MS-CF-MV FF, MS-CF-SL FF, MS-CF-TE FF, MS-CF-RD FF, MS-CF-EBL FF, MS-CF-ENG FF, CO-SU-FE-EP2-EL-870 FF, CO-SU-FE-EP2-AR-450 FF, T/C-CTV FF, HO-130 FF, HO-200 FF, HO-100 FF, HO-180 FF, HO-190 FF, HO-150 FF, HO-160 FF, HO-170 FF, HO-210 FF, HO-140 FF, HO-120 FF, HO-220 FF, HO-230 FF, HO-110 FF, HO-250 FF, HO-260 FF, HO-270 FF, HO-240 FF, HO-280 FF, CO-LS-PL-180 FF | 0d |  |  |
|  | MOB | **Preliminaries and Mobilization Works** |  |  | 2025-12-23 | 2026-02-21 |  |  |  |  |
|  | MOB | **Mobilization Works** |  |  | 2025-12-23 | 2026-02-21 |  |  |  |  |
| MOB-20 |  | Project Site Layout Plan Approval |  | 6d | 2025-12-23 | 2025-12-29 | MS-CS-PS SS, MOB-30 SS | 1d | 0d |  |
| MOB-30 |  | Supply & Install of Project Supervision Offices |  | 0d | 2025-12-23 | 2025-12-23 | MS-CS-PS SS | 0d |  | Unskilled Labor [864 h]; Excavator [216 h]; Mobile Crane [216 h]; Grader [216 h]; Skilled Labor [216 h] |
| MOB-80 |  | Construction Site Access Roads |  | 51d | 2025-12-23 | 2026-02-21 | MOB-20 SS, MS-CS-PS SS | 1d | 0d | Skilled Labor [408 h]; Unskilled Labor [408 h]; Loader [408 h]; Dump Truck [408 h]; Grader [408 h] |
| MOB-90 |  | Site Surveying Work |  | 5d | 2025-12-23 | 2025-12-28 | MS-CS-PS SS | 25d | 0d | Skilled Labor [40 h]; Unskilled Labor [40 h] |
| MOB-40 |  | Construction Project Store |  | 20d | 2025-12-31 | 2026-01-22 | MOB-30 SS+7d, MS-CS-PS SS | 0d |  | Skilled Labor [160 h]; Unskilled Labor [640 h]; Loader [160 h]; Grader [160 h] |
| MOB-10 |  | Clear and Grub for Offices and Access Roads |  | 26d | 2026-01-12 | 2026-02-10 | MOB-60 SS, MS-CS-PS SS | 9d | 0d |  |
| MOB-50 |  | Mobilization of Major Manpower |  | 20d | 2026-01-12 | 2026-02-03 | MOB-40 SS+10d, MS-CS-PS SS | 0d |  |  |
| MOB-60 |  | Mobilization of Major Equipments |  | 20d | 2026-01-12 | 2026-02-03 | MOB-50 SS, MS-CS-PS SS | 0d |  |  |
| MOB-70 |  | Installation Project Sign Board |  | 10d | 2026-01-24 | 2026-02-03 | MOB-10 SS+10d, MS-CS-PS SS | 15d | 14d | Skilled Labor [80 h]; Unskilled Labor [160 h]; Excavator [80 h] |

| ID | WBS | Activity | Duration | Start | Finish | Predecessors | Total float | Free float |
| --- | --- | --- | --- | --- | --- | --- | --- | --- |
|  | 1 | **Project Main Documents From The Contractor** |  | 2025-12-23 | 2026-01-22 |  |  |  |
| PRE-CON-MDC-10 |  | Submission Project Execution Plan | 27d | 2025-12-23 | 2026-01-22 | MS-CS-PS SS | 25d | 0d |
| PRE-CON-MDC-20 |  | Submission Project Baseline Schedule | 27d | 2025-12-23 | 2026-01-22 | MS-CS-PS SS | 25d | 0d |
| PRE-CON-MDC-30 |  | Submission Project Health & Safety Plan | 27d | 2025-12-23 | 2026-01-22 | MS-CS-PS SS | 25d | 0d |
| PRE-CON-MDC-40 |  | Submission Project Quality Control Plan | 27d | 2025-12-23 | 2026-01-22 | MS-CS-PS SS | 25d | 0d |
| PRE-CON-MDC-50 |  | Submission Project Surveying Report | 27d | 2025-12-23 | 2026-01-22 | MS-CS-PS SS, MOB-90 SS | 25d | 0d |
| PRE-CON-MDC-60 |  | Submission Project Geotechnical Soil Report | 27d | 2025-12-23 | 2026-01-22 | MS-CS-PS SS | 25d | 0d |
| PRE-CON-MDC-70 |  | Submission Project Environmental Plan | 27d | 2025-12-23 | 2026-01-22 | MS-CS-PS SS | 25d | 0d |
| PRE-CON-MDC-80 |  | Submission Project Organization Chart and Communications Plan | 27d | 2025-12-23 | 2026-01-22 | MS-CS-PS SS | 25d | 0d |
|  | ENG | **Engineering Works** |  | 2025-12-23 | 2026-01-22 |  |  |  |
|  | SD | **Shop Drawings** |  | 2025-12-31 | 2026-01-22 |  |  |  |
|  | INF | **Infrastructure Networks** |  | 2025-12-31 | 2026-01-22 |  |  |  |
|  | RD | **Road Works** |  | 2025-12-31 | 2026-01-22 |  |  |  |
|  | 1 | **Road Pavement Works** |  | 2025-12-31 | 2026-01-19 |  |  |  |
|  | 1 | **Submittal** |  | 2025-12-31 | 2026-01-07 |  |  |  |
| ENG-SH-RD-S-100 |  | Submission Shop Drawings for Plan and Profile of Road Works | 7d | 2025-12-31 | 2026-01-07 | MS-CS-PS SS+7d | 0d |  |
| ENG-SH-RD-S-110 |  | Submission Shop Drawings for Roads Typical Sections and Pavement Details | 7d | 2025-12-31 | 2026-01-07 | MS-CS-PS SS+7d | 0d |  |
|  | 2 | **Approval** |  | 2026-01-08 | 2026-01-19 |  |  |  |
| ENG-SH-RD-A-100 |  | Approval Shop Drawings for Plan and Profile of Road Works | 10d | 2026-01-08 | 2026-01-19 | ENG-SH-RD-S-100 | 25d | 0d |
| ENG-SH-RD-A-110 |  | Approval Shop Drawings for Roads Typical Sections and Pavement Details | 10d | 2026-01-08 | 2026-01-19 | ENG-SH-RD-S-110 | 28d | 3d |
|  | 10 | **Pavement Works** |  | 2025-12-31 | 2026-01-18 |  |  |  |
|  | 1 | **Submittal** |  | 2025-12-31 | 2026-01-06 |  |  |  |
| ENG-SH-HS-S-100 |  | Submission Shop Drawings for Hardscaping (Curbstone& Interlock) Works | 6d | 2025-12-31 | 2026-01-06 | MS-CS-PS SS, ENG-SH-RD-S-100 SS | 25d | 0d |
|  | 2 | **Approval** |  | 2026-01-07 | 2026-01-18 |  |  |  |
| ENG-SH-HS-A-110 |  | Approval Shop Drawings for Hardscaping (Curbstone& Interlock) Works | 10d | 2026-01-07 | 2026-01-18 | ENG-SH-HS-S-100 | 25d | 0d |

| ID | WBS | Activity | Duration | Start | Finish | Predecessors | Total float | Free float |
| --- | --- | --- | --- | --- | --- | --- | --- | --- |
|  | 11 | **Traffic Sign Boards and Road Marking** |  | 2026-01-07 | 2026-01-22 |  |  |  |
|  | 1 | **Submittal** |  | 2026-01-07 | 2026-01-21 |  |  |  |
| ENG-SH-TSB-S-100 |  | Submission Shop Drawings for Traffic Signs Boards | 6d | 2026-01-07 | 2026-01-13 | MS-CS-PS SS, ENG-SH-HS-A-110 SS | 25d | 0d |
| ENG-SH-MRK-S-110 |  | Submission Shop Drawings for Pavement Markings | 6d | 2026-01-15 | 2026-01-21 | MS-CS-PS SS, ENG-SH-HS-A-110 SS+7d | 25d | 0d |
|  | 2 | **Approval** |  | 2026-01-07 | 2026-01-22 |  |  |  |
| ENG-SH-TSB-A-100 |  | Approval Shop Drawings for Traffic Signs Boards | 7d | 2026-01-07 | 2026-01-14 | ENG-SH-TSB-S-100 SS | 25d | 0d |
| ENG-SH-MRK-A-110 |  | Approval Shop Drawings for Pavement Markings | 7d | 2026-01-15 | 2026-01-22 | ENG-SH-MRK-S-110 SS | 25d | 0d |
|  | SW | **Sewage Network** |  | 2026-01-08 | 2026-01-21 |  |  |  |
|  | 1 | **Main Line Sections** |  | 2026-01-08 | 2026-01-21 |  |  |  |
|  | 1 | **Submittal** |  | 2026-01-08 | 2026-01-13 |  |  |  |
| ENG-SH-SW-ML-S-100 |  | Submission Shop Drawings for Main Line and Manholes of Sewage Network | 5d | 2026-01-08 | 2026-01-13 | MS-CS-PS SS, ENG-SH-RD-S-100, ENG-SH-RD-S-110 | 0d |  |
|  | 2 | **Approval** |  | 2026-01-14 | 2026-01-21 |  |  |  |
| ENG-SH-SW-ML-A-110 |  | Approval Shop Drawings for Main Line and Manholes of Sewage Network | 7d | 2026-01-14 | 2026-01-21 | ENG-SH-SW-ML-S-100 | 25d | 0d |
|  | ST | **Storm Drainage Network** |  | 2026-01-08 | 2026-01-22 |  |  |  |
|  | 1 | **Main Line Sections** |  | 2026-01-08 | 2026-01-22 |  |  |  |
|  | 1 | **Submittal** |  | 2026-01-08 | 2026-01-14 |  |  |  |
| ENG-SH-SD-ML-S-100 |  | Submission Shop Drawings for Main Line and Manholes of Storm Drainage Network | 6d | 2026-01-08 | 2026-01-14 | MS-CS-PS SS, ENG-SH-SW-ML-S-100 SS | 0d |  |
|  | 2 | **Approval** |  | 2026-01-15 | 2026-01-22 |  |  |  |
| ENG-SH-SD-ML-A-110 |  | Approval Shop Drawings for Main Line and Manholes of Storm Drainage Network | 7d | 2026-01-15 | 2026-01-22 | ENG-SH-SD-ML-S-100 | 25d | 0d |
|  | 2 | **Catch Basin Sections** |  | 2026-01-08 | 2026-01-22 |  |  |  |
|  | 1 | **Submittal** |  | 2026-01-08 | 2026-01-14 |  |  |  |
| ENG-SH-SD-CB-S-100 |  | Submission Shop Drawings for Secondary Line and Catch Basin of Storm Drainage Network | 6d | 2026-01-08 | 2026-01-14 | MS-CS-PS SS, ENG-SH-SD-ML-S-100 SS | 25d | 0d |
|  | 2 | **Approval** |  | 2026-01-15 | 2026-01-22 |  |  |  |
| ENG-SH-SD-CB-A-110 |  | Approval Shop Drawings for Secondary Line and Catch Basin of Storm Drainage Network | 7d | 2026-01-15 | 2026-01-22 | ENG-SH-SD-CB-S-100 | 25d | 0d |

| ID | WBS | Activity | Duration | Start | Finish | Predecessors | Total float | Free float |
| --- | --- | --- | --- | --- | --- | --- | --- | --- |
|  | PW | **Potable Water Network** |  | 2026-01-08 | 2026-01-21 |  |  |  |
|  | 1 | **Main Line Sections** |  | 2026-01-08 | 2026-01-21 |  |  |  |
|  | 1 | **Submittal** |  | 2026-01-08 | 2026-01-13 |  |  |  |
| ENG-SH-PW-ML-S-100 |  | Submission Shop Drawings for Main Line and Valve Chambers of Potable Water Network | 5d | 2026-01-08 | 2026-01-13 | MS-CS-PS SS, ENG-SH-SD-ML-S-100 SS | 22d | 0d |
|  | 2 | **Approval** |  | 2026-01-14 | 2026-01-21 |  |  |  |
| ENG-SH-PW-ML-A-110 |  | Approval Shop Drawings for Main Line and Valve Chambers of Potable Water Network | 7d | 2026-01-14 | 2026-01-21 | ENG-SH-PW-ML-S-100 | 25d | 0d |
|  | 2 | **Fire Hydrant** |  | 2026-01-08 | 2026-01-21 |  |  |  |
|  | 1 | **Submittal** |  | 2026-01-08 | 2026-01-13 |  |  |  |
| ENG-SH-PW-FH-S-100 |  | Submission Shop Drawings for Fire Hydrant Network | 5d | 2026-01-08 | 2026-01-13 | MS-CS-PS SS, ENG-SH-PW-ML-S-100 SS | 26d | 0d |
|  | 2 | **Approval** |  | 2026-01-14 | 2026-01-21 |  |  |  |
| ENG-SH-PW-FH-A-110 |  | Approval Shop Drawings for Fire Hydrant Network | 7d | 2026-01-14 | 2026-01-21 | ENG-SH-PW-FH-S-100 | 26d | 1d |
|  | IR | **Irrigation Network** |  | 2026-01-08 | 2026-01-22 |  |  |  |
|  | 1 | **Main Line Sections** |  | 2026-01-08 | 2026-01-22 |  |  |  |
|  | 1 | **Submittal** |  | 2026-01-08 | 2026-01-14 |  |  |  |
| ENG-SH-IR-ML-S-100 |  | Submission Shop Drawings for Main Line and Valves & Bulbblers and Sprinklers of Irrigation Network | 6d | 2026-01-08 | 2026-01-14 | MS-CS-PS SS, ENG-SH-PW-ML-S-100 SS | 25d | 0d |
|  | 2 | **Approval** |  | 2026-01-15 | 2026-01-22 |  |  |  |
| ENG-SH-IR-ML-A-110 |  | Approval Shop Drawings for Main Line and Valves & Bulbblers and Sprinklers of Irrigation Network | 7d | 2026-01-15 | 2026-01-22 | ENG-SH-IR-ML-S-100 | 25d | 0d |
|  | TSE | **Treated Sewage Effluent Network** |  | 2026-01-08 | 2026-01-22 |  |  |  |
|  | 1 | **Main Line Sections** |  | 2026-01-08 | 2026-01-22 |  |  |  |
|  | 1 | **Submittal** |  | 2026-01-08 | 2026-01-14 |  |  |  |
| ENG-SH-TSE-ML-S-110 |  | Submission Shop Drawings for Main Line Treated Sewage Effluent Network | 6d | 2026-01-08 | 2026-01-14 | MS-CS-PS SS, ENG-SH-IR-ML-S-100 SS | 25d | 0d |
|  | 2 | **Approval** |  | 2026-01-15 | 2026-01-22 |  |  |  |
| ENG-SH-TSE-ML-A-120 |  | Approval Shop Drawings for Main Line Treated Sewage Effluent Network | 7d | 2026-01-15 | 2026-01-22 | ENG-SH-TSE-ML-S-110 | 25d | 0d |
|  | MV | **Medium Voltage Network** |  | 2026-01-08 | 2026-01-22 |  |  |  |
|  | 1 | **Submittal** |  | 2026-01-08 | 2026-01-14 |  |  |  |
| ENG-SH-MV-S-100 |  | Submission Shop Drawings for Medium Voltage Network | 6d | 2026-01-08 | 2026-01-14 | MS-CS-PS SS, ENG-SH-IR-ML-S-100 SS | 25d | 0d |

| ID | WBS | Activity | Duration | Start | Finish | Predecessors | Total float | Free float |
| --- | --- | --- | --- | --- | --- | --- | --- | --- |
|  | 2 | **Approval** |  | 2026-01-15 | 2026-01-22 |  |  |  |
| ENG-SH-MV-A-110 |  | Approval Shop Drawings for Medium Voltage Network | 7d | 2026-01-15 | 2026-01-22 | ENG-SH-MV-S-100 | 25d | 0d |
|  | LV | **Low Voltage Network** |  | 2026-01-08 | 2026-01-22 |  |  |  |
|  | 1 | **Submittal** |  | 2026-01-08 | 2026-01-14 |  |  |  |
| ENG-SH-LV-S-110 |  | Submission Shop Drawings for Low Voltage Network | 6d | 2026-01-08 | 2026-01-14 | MS-CS-PS SS, ENG-SH-IR-ML-S-100 SS | 25d | 0d |
|  | 2 | **Approval** |  | 2026-01-15 | 2026-01-22 |  |  |  |
| ENG-SH-LV-A-120 |  | Approval Shop Drawings for Low Voltage Network | 7d | 2026-01-15 | 2026-01-22 | ENG-SH-LV-S-110 | 25d | 0d |
|  | SL | **Street Lighting Network** |  | 2026-01-13 | 2026-01-22 |  |  |  |
|  | 1 | **Submittal** |  | 2026-01-13 | 2026-01-19 |  |  |  |
| ENG-SH-SL-S-100 |  | Submission Shop Drawings for Street Lighting Network | 6d | 2026-01-13 | 2026-01-19 | MS-CS-PS SS, ENG-SH-MV-S-100 SS+4d | 25d | 0d |
|  | 2 | **Approval** |  | 2026-01-15 | 2026-01-22 |  |  |  |
| ENG-SH-SL-A-110 |  | Approval Shop Drawings for Street Lighting Network | 7d | 2026-01-15 | 2026-01-22 | ENG-SH-SL-S-100 SS+2d | 25d | 0d |
|  | TL | **Telecom Network** |  | 2026-01-14 | 2026-01-22 |  |  |  |
|  | 1 | **Submittal** |  | 2026-01-15 | 2026-01-21 |  |  |  |
| ENG-SH-CTV-S-100 |  | Submission Shop Drawings for CCTV Complete System | 6d | 2026-01-15 | 2026-01-21 | MS-CS-PS SS, ENG-SH-TE-S-100 SS | 25d | 0d |
| ENG-SH-MSN-S-110 |  | Submission Shop Drawings for MSN System | 6d | 2026-01-15 | 2026-01-21 | MS-CS-PS SS, ENG-SH-CTV-S-100 SS | 26d | 0d |
| ENG-SH-TE-S-100 |  | Submission Shop Drawings for Telecom Network | 6d | 2026-01-15 | 2026-01-21 | MS-CS-PS SS, ENG-SH-LV-S-110 | 25d | 0d |
|  | 2 | **Approval** |  | 2026-01-14 | 2026-01-22 |  |  |  |
| ENG-SH-MSN-A-120 |  | Approval Shop Drawings for MSN System | 7d | 2026-01-14 | 2026-01-21 | ENG-SH-MSN-S-110 FF | 26d | 1d |
| ENG-SH-CTV-A-110 |  | Approval Shop Drawings for CCTV Complete System | 7d | 2026-01-15 | 2026-01-22 | ENG-SH-CTV-S-100 SS | 25d | 0d |
| ENG-SH-TE-A-110 |  | Approval Shop Drawings for Telecom Network | 7d | 2026-01-15 | 2026-01-22 | ENG-SH-TE-S-100 SS | 25d | 0d |
|  | 1 | **Superstructure Works** |  | 2026-01-08 | 2026-01-22 |  |  |  |
|  | PS | **Pump Stations** |  | 2026-01-14 | 2026-01-22 |  |  |  |
|  | 1 | **Submittal** |  | 2026-01-14 | 2026-01-20 |  |  |  |
| ENG-SH-SPS-S-150 |  | Submission Shop Drawings Package for Sewage Pump Stations | 6d | 2026-01-14 | 2026-01-20 | MS-CS-PS SS, ENG-SH-PW-ML-A-110 SS | 25d | 0d |

| ID | WBS | Activity | Duration | Start | Finish | Predecessors | Total float | Free float |
| --- | --- | --- | --- | --- | --- | --- | --- | --- |
|  | 2 | **Approval** |  | 2026-01-17 | 2026-01-22 |  |  |  |
| ENG-SH-SPS-A-160 |  | Approval Shop Drawings Package for Sewage Pump Stations | 6d | 2026-01-17 | 2026-01-22 | ENG-SH-SPS-S-150 SS+2d | 25d | 0d |
|  | LS | **Lift Station** |  | 2026-01-14 | 2026-01-22 |  |  |  |
|  | 1 | **Submittal** |  | 2026-01-14 | 2026-01-20 |  |  |  |
| ENG-SH-LS-S-160 |  | Submission Shop Drawings Package for Lift Stations | 6d | 2026-01-14 | 2026-01-20 | MS-CS-PS SS, ENG-SH-SW-ML-A-110 SS | 25d | 0d |
|  | 2 | **Approval** |  | 2026-01-17 | 2026-01-22 |  |  |  |
| ENG-SH-LS-A-170 |  | Approval Shop Drawings Package for Lift Stations | 6d | 2026-01-17 | 2026-01-22 | ENG-SH-LS-S-160 SS+2d | 25d | 0d |
|  | PO | **Storm Drainage Ponds** |  | 2026-01-15 | 2026-01-22 |  |  |  |
|  | 1 | **Submittal** |  | 2026-01-15 | 2026-01-21 |  |  |  |
| ENG-SH-DPO-S-110 |  | Submission Shop Drawings Package for Storm Drainage Ponds | 6d | 2026-01-15 | 2026-01-21 | MS-CS-PS SS, ENG-SH-SD-ML-A-110 SS, ENG-SH-SD-CB-A-110 SS | 25d | 0d |
|  | 2 | **Approval** |  | 2026-01-17 | 2026-01-22 |  |  |  |
| ENG-SH-DPO-A-120 |  | Approval Shop Drawings Package for Storm Drainage Ponds | 6d | 2026-01-17 | 2026-01-22 | ENG-SH-DPO-S-110 SS+1d | 25d | 0d |
|  | ST | **Storage Tank (TSE)** |  | 2026-01-15 | 2026-01-22 |  |  |  |
|  | 1 | **Submittal** |  | 2026-01-15 | 2026-01-21 |  |  |  |
| ENG-SH-ST-S-170 |  | Submission Shop Drawings Package for Storage Tank TSE | 6d | 2026-01-15 | 2026-01-21 | MS-CS-PS SS, ENG-SH-TSE-ML-A-120 SS | 25d | 0d |
|  | 2 | **Approval** |  | 2026-01-17 | 2026-01-22 |  |  |  |
| ENG-SH-ST-A-180 |  | Approval Shop Drawings Package for Storage Tank TSE | 6d | 2026-01-17 | 2026-01-22 | ENG-SH-ST-S-170 SS+1d | 25d | 0d |
|  | GR | **Gaurd Room** |  | 2026-01-17 | 2026-01-22 |  |  |  |
| ENG-SH-GR-A-190 |  | Approval Shop Drawings Package for Gaurd Room | 6d | 2026-01-17 | 2026-01-22 | ENG-SH-GR-S-180 SS | 25d | 0d |
|  | 1 | **Submittal** |  | 2026-01-17 | 2026-01-22 |  |  |  |
| ENG-SH-GR-S-180 |  | Submission Shop Drawings Package for Gaurd Room | 6d | 2026-01-17 | 2026-01-22 | MS-CS-PS SS, ENG-SH-RD-A-100 SS+7d | 25d | 0d |
|  | 2 | **Approval** |  |  |  |  |  |  |
|  | FE | **Fence** |  | 2026-01-08 | 2026-01-22 |  |  |  |
|  | 1 | **Submittal** |  | 2026-01-08 | 2026-01-14 |  |  |  |
| ENG-SH-GR-S-190 |  | Submission Shop Drawings Package for Fence | 6d | 2026-01-08 | 2026-01-14 | MS-CS-PS SS, ENG-SH-RD-A-100 SS | 25d | 0d |

| ID | WBS | Activity | Duration | Start | Finish | Predecessors | Total float | Free float | Resources | Cost | 01- Network |
| --- | --- | --- | --- | --- | --- | --- | --- | --- | --- | --- | --- |
|  | 2 | **Approval** |  | 2026-01-15 | 2026-01-22 |  |  |  |  |  |  |
| ENG-SH-GR-A-200 |  | Approval Shop Drawings Package for Fence | 7d | 2026-01-15 | 2026-01-22 | ENG-SH-GR-S-190 | 25d | 0d |  |  |  |
|  | SD11 | **Material Submittals and Approvals** |  | 2025-12-23 | 2026-01-22 |  |  |  |  |  |  |
|  | 2 | **Short Lead Time Items** |  | 2025-12-23 | 2026-01-22 |  |  |  |  |  |  |
|  | INF | **Infrastructure Networks** |  | 2026-01-07 | 2026-01-22 |  |  |  |  |  |  |
|  | 10 | **Road Works** |  | 2026-01-07 | 2026-01-22 |  |  |  |  |  |  |
|  | MS | **Submission of Material** |  | 2026-01-07 | 2026-01-14 |  |  |  |  |  |  |
|  | 1 | **Roads Works** |  | 2026-01-08 | 2026-01-14 |  |  |  |  |  |  |
| ENG-MT-RD-S-100 |  | Material Submittal for Subgrade of Road Works | 6d | 2026-01-08 | 2026-01-14 | ENG-SH-RD-S-100 | 25d | 0d |  |  |  |
| ENG-MT-RD-S-110 |  | Material Submittal for Aggregate Base Course of Road Works | 6d | 2026-01-08 | 2026-01-14 | ENG-SH-RD-S-100 | 25d | 0d |  |  |  |
| ENG-MT-RD-S-120 |  | Material Submittal for Prime Coat of Road Works | 6d | 2026-01-08 | 2026-01-14 | ENG-SH-RD-S-100 | 25d | 0d |  |  |  |
| ENG-MT-RD-S-130 |  | Material Submittal for Bituminous Base & Wearing Courses of Road Works | 6d | 2026-01-08 | 2026-01-14 | ENG-SH-RD-S-100 | 25d | 0d |  |  |  |
|  | 10 | **Pavement Works** |  | 2026-01-08 | 2026-01-14 |  |  |  |  |  |  |
| ENG-MT-RD-S-140 |  | Material Submittal for Interlock Tiles of Landscaping | 6d | 2026-01-08 | 2026-01-14 | ENG-MT-RD-S-130 SS | 25d | 0d |  |  |  |
| ENG-MT-RD-S-150 |  | Material Submittal for Curbstones of Landscaping | 6d | 2026-01-08 | 2026-01-14 | ENG-MT-RD-S-130 SS | 25d | 0d |  |  |  |
|  | 11 | **Traffic Signs Boards and Roads Marking** |  | 2026-01-07 | 2026-01-13 |  |  |  |  |  |  |
| ENG-MT-TS-S-100 |  | Material Submittal for Traffic Signs Boards of Road Works | 6d | 2026-01-07 | 2026-01-13 | ENG-SH-TSB-A-100 SS | 26d | 1d |  |  |  |
| ENG-MT-TS-S-110 |  | Material Submittal for Road Markings of Road Works | 6d | 2026-01-07 | 2026-01-13 | ENG-SH-TSB-S-100 SS | 26d | 1d |  |  |  |
|  | NA | **Approval of Material** |  | 2026-01-15 | 2026-01-22 |  |  |  |  |  |  |
|  | 1 | **Road Works** |  | 2026-01-15 | 2026-01-22 |  |  |  |  |  |  |
| ENG-MT-RD-A-100 |  | Material Approval for Subgrade of Road Works | 7d | 2026-01-15 | 2026-01-22 | ENG-MT-RD-S-100 | 25d | 0d | Subgrade [2963] | 4,355.61 | RD |
| ENG-MT-RD-A-110 |  | Material Approval for Aggregate Base Course of Road Works | 7d | 2026-01-15 | 2026-01-22 | ENG-MT-RD-S-110 | 25d | 0d | Aggregate base course [1482] | 4,490.46 | RD |
| ENG-MT-RD-A-120 |  | Material Approval for Prime Coat of Road Works | 7d | 2026-01-15 | 2026-01-22 | ENG-MT-RD-S-120 | 25d | 0d | Bituminous base course (Grading I - Class A), including Prime Coat (MC1) [494] | 9,069.84 | RD |
| ENG-MT-RD-A-130 |  | Material Approval for Bituminous Base & Wearing Courses of Road Works | 7d | 2026-01-15 | 2026-01-22 | ENG-MT-RD-S-130 | 25d | 0d | Bituminous concrete wearing course, (Grading I - Class A), including tack coat (RC2) [494] | 9,158.76 | RD |

| ID | WBS | Activity | Duration | Start | Finish | Predecessors | Total float | Free float | Resources | Cost | 01- Network |
| --- | --- | --- | --- | --- | --- | --- | --- | --- | --- | --- | --- |
|  | 2 | **Pavement Works** |  | 2026-01-15 | 2026-01-22 |  |  |  |  |  |  |
| ENG-MT-RD-A-140 |  | Material Approval of Interlock Tiles for Landscaping | 7d | 2026-01-15 | 2026-01-22 | ENG-MT-RD-S-140 | 25d | 0d | 60mm thick [27926]; 80mm thick [38996.8] | 158,245.09 | RD |
| ENG-MT-RD-A-150 |  | Material Approval of Curbstones for Landscaping | 7d | 2026-01-15 | 2026-01-22 | ENG-MT-RD-S-150 | 25d | 0d | Precast Concrete Curbstone 150X300X900 Type (K1-A) [7267]; Precast Concrete Curbstone 100X200X500 Type (K4) [5638]; Precast Concrete Curbstone 150X300X500 Type (K1-B) [2210]; Precast Concrete Curbstone Type (K1-C) [99]; Flush Kerb Type (D) [188] | 22,178.88 | RD |
|  | 3 | **Traffic Signs Boards and Roads Marking** |  | 2026-01-15 | 2026-01-22 |  |  |  |  |  |  |
| ENG-MT-TS-A-100 |  | Material Approval for Traffic Signs Boards of Road Works | 7d | 2026-01-15 | 2026-01-22 | ENG-MT-TS-S-100, ENG-SH-TSB-A-100 | 25d | 0d | Traffic signs, ground mounted, Sheet Aluminum, (breakaway) Single post IPE, with all accessories [99]; Precast Concrete Blister Warning Tactile Paver Brown Finish 300*300*60mm [64] | 3,196.8 | RD |
| ENG-MT-TS-A-110 |  | Material Approval for Road Markings of Road Works | 7d | 2026-01-15 | 2026-01-22 | ENG-MT-TS-S-110, ENG-SH-MRK-A-110 SS | 25d | 0d | Retroreflective Thermoplastic White Traffic lines [965]; Retroreflective Thermoplastic Yellow, Traffic lines [1445] | 3,036.6 | RD |
|  | 6 | **Softscape and Planting Works** |  | 2026-01-07 | 2026-01-22 |  |  |  |  |  |  |
|  | 1 | **Submission of Material** |  | 2026-01-07 | 2026-01-14 |  |  |  |  |  |  |
| ENG-MT-IR-ML-S-140 |  | Material Submittal for Softscape and Planting Works | 7d | 2026-01-07 | 2026-01-14 | ENG-SH-HS-A-110 SS | 25d | 0d |  |  |  |
| ENG-MT-IR-ML-S-150 |  | Material Submittal for Site Furnishings (Seating Bench,Stone Boulders and Gravel) | 7d | 2026-01-07 | 2026-01-14 | ENG-SH-HS-A-110 SS | 25d | 0d |  |  |  |
|  | 2 | **Approval of Material** |  | 2026-01-15 | 2026-01-22 |  |  |  |  |  |  |
| ENG-MT-IR-ML-A-140 |  | Material Approval for Softscape and Planting Works | 7d | 2026-01-15 | 2026-01-22 | ENG-MT-IR-ML-S-140, ENG-SH-HS-A-110 SS | 25d | 0d |  |  |  |
| ENG-MT-IR-ML-A-150 |  | Material Approval for Site Furnishings (Seating Bench,Stone Boulders and Gravel) | 7d | 2026-01-15 | 2026-01-22 | ENG-MT-IR-ML-S-150, ENG-SH-HS-A-110 SS | 25d | 0d |  |  |  |
|  | 2 | **Sewage Network** |  | 2026-01-08 | 2026-01-22 |  |  |  |  |  |  |
|  | MS | **Submission of Material** |  | 2026-01-08 | 2026-01-14 |  |  |  |  |  |  |
|  | 1 | **Main Line Sections** |  | 2026-01-08 | 2026-01-14 |  |  |  |  |  |  |
| ENG-MT-SW-ML-S-100 |  | Material Submittal for Manholes of Sewage Network | 6d | 2026-01-08 | 2026-01-14 | ENG-MT-RD-S-150 SS | 25d | 0d |  |  |  |
| ENG-MT-SW-ML-S-110 |  | Material Submittal for Main Line Pipes of Sewage Network | 6d | 2026-01-08 | 2026-01-14 | ENG-MT-RD-S-150 SS | 25d | 0d |  |  |  |
|  | 3 | **Testing and Finishes** |  | 2026-01-08 | 2026-01-14 |  |  |  |  |  |  |
| ENG-MT-SW-TF-S-100 |  | Material Submittal for Manhole Covers of Sewage Network | 6d | 2026-01-08 | 2026-01-14 | ENG-MT-RD-S-150 SS | 25d | 0d |  |  |  |
|  | MA | **Approval of Material** |  | 2026-01-15 | 2026-01-22 |  |  |  |  |  |  |
|  | 1 | **Main Line Sections** |  | 2026-01-15 | 2026-01-22 |  |  |  |  |  |  |
| ENG-MT-SW-ML-A-100 |  | Material Approval for Manholes of Sewage Network | 7d | 2026-01-15 | 2026-01-22 | ENG-MT-SW-ML-S-100 | 25d | 0d | Depth: 0 - 1.5m [2]; Depth: 1.51 - 2.5m [35]; Depth: 2.51 - 3.5m [2]; Depth > 3.50m [1] | 3,479.28 | SW |
| ENG-MT-SW-ML-A-110 |  | Material Approval for Main Line Pipes of Sewage Network | 7d | 2026-01-15 | 2026-01-22 | ENG-MT-SW-ML-S-110 | 25d | 0d | Depth Between 0m to 1.50m [40]; Depth Between 1.50m to 2.50m [246]; Depth > 2.50m [10]; Depth Between 0m to 1.50m [22]; Depth Between 1.50m to 2.50m [1600]; Depth Between 2.50m to 3.50m [75]; Depth > 3.50m [15]; HDPE Force Main (PE 100, SDR 11, PN 16 bar) DN 160 mm diameter, in trenches depth: 0- 1.5m [25]; HDPE Force Main (PE 100, SDR 11, PN 16 bar) DN 160 mm diameter, in trenches depth: 1.51- 2.5m [40] | 18,632.28 | SW |

| ID | WBS | Activity | Duration | Start | Finish | Predecessors | Total float | Free float | Resources | Cost | 01- Network |
| --- | --- | --- | --- | --- | --- | --- | --- | --- | --- | --- | --- |
|  | 3 | **Testing and Finishes** |  | 2026-01-15 | 2026-01-22 |  |  |  |  |  |  |
| ENG-MT-SW-TF-A-100 |  | Material Approval for Manhole Covers of Sewage Network | 7d | 2026-01-15 | 2026-01-22 | ENG-MT-SW-TF-S-100 | 25d | 0d |  |  |  |
|  | 9 | **Storm Drainage Network** |  | 2026-01-08 | 2026-01-22 |  |  |  |  |  |  |
|  | MS | **Submission of Material** |  | 2026-01-08 | 2026-01-14 |  |  |  |  |  |  |
|  | 1 | **Main Line Sections** |  | 2026-01-08 | 2026-01-14 |  |  |  |  |  |  |
| ENG-MT-SD-ML-S-100 |  | Material Submittal for Manholes of Storm Drainage Network | 6d | 2026-01-08 | 2026-01-14 | ENG-SH-SD-ML-S-100 SS | 25d | 0d |  |  |  |
| ENG-MT-SD-ML-S-110 |  | Material Submittal for Main Line Pipes of Storm Drainage Network | 6d | 2026-01-08 | 2026-01-14 | ENG-SH-SD-ML-S-100 SS | 0d |  |  |  |  |
|  | 2 | **Catch Basin Sections** |  | 2026-01-08 | 2026-01-14 |  |  |  |  |  |  |
| ENG-MT-SD-CB-S-100 |  | Material Submittal for Catch Basins of Storm Drainage Network | 6d | 2026-01-08 | 2026-01-14 | ENG-SH-SD-ML-S-100 SS | 25d | 0d |  |  |  |
| ENG-MT-SD-CB-S-110 |  | Material Submittal for Catch Basin Pipes of Storm Drainage Network | 6d | 2026-01-08 | 2026-01-14 | ENG-SH-SD-ML-S-100 SS | 25d | 0d |  |  |  |
|  | 3 | **Testing and Finishes** |  | 2026-01-08 | 2026-01-14 |  |  |  |  |  |  |
| ENG-MT-SD-TF-S-100 |  | Material Submittal for Manhole Covers of Storm Drainage Network | 6d | 2026-01-08 | 2026-01-14 | ENG-SH-SD-ML-S-100 SS | 25d | 0d |  |  |  |
| ENG-MT-SD-TF-S-110 |  | Material Submittal for Catch Basin Covers of Storm Drainage Network | 6d | 2026-01-08 | 2026-01-14 | ENG-SH-SD-ML-S-100 SS | 25d | 0d |  |  |  |
|  | MA | **Approval of Material** |  | 2026-01-15 | 2026-01-22 |  |  |  |  |  |  |
|  | 1 | **Main Line Sections** |  | 2026-01-15 | 2026-01-22 |  |  |  |  |  |  |
| ENG-MT-SD-ML-A-100 |  | Material Approval for Manholes of Storm Drainage Network | 7d | 2026-01-15 | 2026-01-22 | ENG-MT-SD-ML-S-100 | 25d | 0d | MH depth 1.5 - 2.5m [20]; MH depth 2.5 - 3.5m [17]; MH depth > 3.50m [1]; MH depth 2.5 -3.5m [2] | 17,823.96 | SD |
| ENG-MT-SD-ML-A-110 |  | Material Approval for Main Line Pipes of Storm Drainage Network | 7d | 2026-01-15 | 2026-01-22 | ENG-MT-SD-ML-S-110 | 0d |  | Depth Between 1.50m to 2.50m [548]; Depth Between 2.50m to 3.50m [439]; Depth > 3.50m [15]; Depth Between 2.50m to 3.50m [191]; Depth Between 0m to 1.50m [28]; Depth Between 1.50m to 2.50m [10]; Depth Between 2.50m to 3.50m [94]; Depth > 3.50m [7]; Depth Between 2.50m to 3.50m [121]; Depth Between 3.50m to 4.50m [371]; Depth > 4.50m [15]; Depth Between 3.50m to 4.50m [737]; Depth > 4.50m [25] | 65,012.73 | SD |
|  | 2 | **Catch Basin Sections** |  | 2026-01-15 | 2026-01-22 |  |  |  |  |  |  |
| ENG-MT-SD-CB-A-100 |  | Material Approval for Catch Basins of Storm Drainage Network | 7d | 2026-01-15 | 2026-01-22 | ENG-MT-SD-CB-S-100 | 25d | 0d | Single Catch Basin 1000mm x 1000mm [197]; Double Catch Basin 1200mm x 2300mm [4] | 47,322 | SD |
| ENG-MT-SD-CB-A-110 |  | Material Approval for Catch Basin Pipes of Storm Drainage Network | 7d | 2026-01-15 | 2026-01-22 | ENG-MT-SD-CB-S-110 | 25d | 0d | Depth Between 0m to 1.50m [95]; Depth Between 1.50m to 2.50m [2819]; Depth > 2.50m [15] | 43,349.25 | SD |
|  | 3 | **Testing and Finishes** |  | 2026-01-15 | 2026-01-22 |  |  |  |  |  |  |
| ENG-MT-SD-TF-A-100 |  | Material Approval for Manhole Covers of Storm Drainage Network | 7d | 2026-01-15 | 2026-01-22 | ENG-MT-SD-TF-S-100 | 25d | 0d |  |  |  |
| ENG-MT-SD-TF-A-110 |  | Material Approval for Catch Basin Covers of Storm Drainage Network | 7d | 2026-01-15 | 2026-01-22 | ENG-MT-SD-TF-S-110 | 25d | 0d |  |  |  |
|  | 3 | **Potable Water Network** |  | 2026-01-08 | 2026-01-22 |  |  |  |  |  |  |
|  | MS | **Submission of Material** |  | 2026-01-08 | 2026-01-14 |  |  |  |  |  |  |
|  | 1 | **Main Line Sections** |  | 2026-01-08 | 2026-01-14 |  |  |  |  |  |  |
| ENG-MT-PW-ML-S-100 |  | Material Submittal for Main Line Pipes of Potable Water Network | 6d | 2026-01-08 | 2026-01-14 | ENG-SH-PW-ML-S-100 SS | 25d | 0d |  |  |  |
| ENG-MT-PW-ML-S-110 |  | Material Submittal for Main Line Valves of Potable Water Network | 6d | 2026-01-08 | 2026-01-14 | ENG-SH-PW-ML-S-100 SS | 25d | 0d |  |  |  |

| ID | WBS | Activity | Duration | Start | Finish | Predecessors | Total float | Free float | Resources | Cost | 01- Network |
| --- | --- | --- | --- | --- | --- | --- | --- | --- | --- | --- | --- |
|  | 3 | **Fire Hydrant** |  | 2026-01-08 | 2026-01-14 |  |  |  |  |  |  |
| ENG-MT-PW-FH-S-100 |  | Material Submittal for Fire Hydrant of Potable Water Network | 6d | 2026-01-08 | 2026-01-14 | ENG-SH-PW-ML-S-100 SS | 25d | 0d |  |  |  |
|  | 4 | **Testing and Finishes** |  | 2026-01-08 | 2026-01-14 |  |  |  |  |  |  |
| ENG-MT-PW-TF-S-100 |  | Material Submittal for Surface Box of Potable Water Network | 6d | 2026-01-08 | 2026-01-14 | ENG-SH-PW-ML-S-100 SS | 22d | 0d |  |  |  |
|  | MA | **Approval of Material** |  | 2026-01-15 | 2026-01-22 |  |  |  |  |  |  |
|  | 1 | **Main Line Sections** |  | 2026-01-15 | 2026-01-22 |  |  |  |  |  |  |
| ENG-MT-PW-ML-A-100 |  | Material Approval for Main Line Pipes of Potable Water Network | 7d | 2026-01-15 | 2026-01-22 | ENG-MT-PW-ML-S-100 | 25d | 0d |  |  |  |
| ENG-MT-PW-ML-A-110 |  | Material Approval for Valves of Potable Water Network | 7d | 2026-01-15 | 2026-01-22 | ENG-MT-PW-ML-S-110 | 25d | 0d |  |  |  |
|  | 3 | **Fire Hydrant** |  | 2026-01-15 | 2026-01-22 |  |  |  |  |  |  |
| ENG-MT-PW-FH-A-100 |  | Material Approval for Fire Hydrants of Potable Water Network | 7d | 2026-01-15 | 2026-01-22 | ENG-MT-PW-FH-S-100 | 25d | 0d |  |  |  |
|  | 4 | **Testing and Finishes** |  | 2026-01-15 | 2026-01-22 |  |  |  |  |  |  |
| ENG-MT-PW-TF-A-100 |  | Material Approval for Surface Box of Potable Water Network | 7d | 2026-01-15 | 2026-01-22 | ENG-MT-PW-TF-S-100 | 22d | 0d |  |  |  |
|  | 4 | **Irrigation Network** |  | 2026-01-07 | 2026-01-22 |  |  |  |  |  |  |
|  | MS | **Submission of Material** |  | 2026-01-07 | 2026-01-14 |  |  |  |  |  |  |
|  | 1 | **Main Line Pipes** |  | 2026-01-07 | 2026-01-14 |  |  |  |  |  |  |
| ENG-MT-IR-ML-S-100 |  | Material Submittal for Main Line Pipes of Irrigation Network | 7d | 2026-01-07 | 2026-01-14 | ENG-SH-HS-S-100 | 25d | 0d |  |  |  |
| ENG-MT-IR-ML-S-110 |  | Material Submittal for Main Line Valves of Irrigation Network | 7d | 2026-01-07 | 2026-01-14 | ENG-SH-HS-S-100 | 25d | 0d |  |  |  |
|  | MA | **Approval of Material** |  | 2026-01-15 | 2026-01-22 |  |  |  |  |  |  |
|  | 1 | **Main Line Pipes** |  | 2026-01-15 | 2026-01-22 |  |  |  |  |  |  |
| ENG-MT-IR-ML-A-100 |  | Material Approval for Main Line Pipes of Irrigation Network | 7d | 2026-01-15 | 2026-01-22 | ENG-MT-IR-ML-S-100 | 25d | 0d | Depth Between 0m to 1.50m [6]; Depth Between 1.50m to 2.50m [6]; Depth > 2.50m [2]; Depth Between 0m to 1.50m [420]; Depth Between 1.50m to 2.50m [280]; Depth > 2.50m [10]; Depth Between 0m to 1.50m [50]; Depth Between 1.50m to 2.50m [10]; Depth > 2.50m [5]; Depth Between 0m to 1.50m [320]; Depth Between 1.50m to 2.50m [1310]; Depth > 2.50m [20]; pipe line O.D 32 mm PN 10, in depth 0 to 1.5 m [3350]; pipe line O.D 40 mm PN 10, in depth 0 to 1.5 m [1850]; pipe line O.D 50 mm PN 10, in depth 0 to 1.5 m [250] | 23,204.28 | IR |
| ENG-MT-IR-ML-A-110 |  | Material Approval for Valves of Irrigation Network | 7d | 2026-01-15 | 2026-01-22 | ENG-MT-IR-ML-S-110 | 25d | 0d | Gate valves Dia 50 mm [1]; Gate valves Dia 100 mm [12]; Gate valves Dia 150 mm [17]; Gate valves Dia 250 mm [9]; Air valves with Dia 50 mm [1]; Washout valve Dia 100 mm [2]; 3-outlet fire hydrant (2 x 2.5 inch and 1 x 4.5 inch) in the form of a separate dry vacuum cylinder, complete according to drawings. [17]; Wash out chamber (2500x 2500mm) [2]; Air valve chamber (1000x 1000 mm) [1]; Flow meter chamber (1500x 2500 mm) [1]; Flow meter dia 100 mm [1]; Gate valve 50 mm PN16 [7]; Direct Burried Gate valve 40 mm PN16 [12]; Pressure–compensating bubblers 110 Lit/Hr [850]; Flushing Bronze gate valve dia 1.5" inside PVC box [19]; Air release valve 1.5" inside PVC box [19]; Extra flexible pressure compensating on surface inline dripline`s, O.D. is 16.1 mm [12000]; Electrical Solenoid Valve ( 1.5") inside PVC box [12]; Electrical Solenoid Valve ( 2") inside PVC box [7]; Quick coupling valve 1" inside a round valve box 10" size with a manual gate valve, hose swivel and key with all accessories [53]; Advanced Irrigation controller subject to client approval, can connect with Centarl Control system [1]; Decoder cables 12 AWG between valves and controllers, The cables shall be pulled through 32Ø UPVC conduit [3500]; Preparing the irrigation program for the entire system and providing technical services for monitoring and controlling the central irrigation systems [1] | 31,389.9 | IR |
|  | 1 | **Treated Sewage Effluent (Tse)** |  | 2026-01-07 | 2026-01-22 |  |  |  |  |  |  |
|  | MS | **Submission of Material** |  | 2026-01-07 | 2026-01-14 |  |  |  |  |  |  |
|  | 1 | **Main Line Pipes** |  | 2026-01-07 | 2026-01-14 |  |  |  |  |  |  |
| ENG-MT-IR-ML-S-120 |  | Material Submittal for Main Line Pipes of Irrigation Network | 7d | 2026-01-07 | 2026-01-14 | ENG-SH-HS-S-100 | 25d | 0d |  |  |  |
| ENG-MT-IR-ML-S-130 |  | Material Submittal for Main Line Valves of Irrigation Network | 7d | 2026-01-07 | 2026-01-14 | ENG-SH-HS-S-100 | 25d | 0d |  |  |  |

| ID | WBS | Activity | Duration | Start | Finish | Predecessors | Total float | Free float | Resources | Cost | 01- Network |
| --- | --- | --- | --- | --- | --- | --- | --- | --- | --- | --- | --- |
|  | MA | **Approval of Material** |  | 2026-01-15 | 2026-01-22 |  |  |  |  |  |  |
|  | 1 | **Main Line Pipes** |  | 2026-01-15 | 2026-01-22 |  |  |  |  |  |  |
| ENG-MT-IR-ML-A-120 |  | Material Approval for Main Line Pipes of Irrigation Network | 7d | 2026-01-15 | 2026-01-22 | ENG-MT-IR-ML-S-120 | 25d | 0d | Depth Between 0m to 1.50m [10]; Depth Between 1.50m to 2.50m [5]; Depth > 2.50m [2]; Depth Between 0m to 1.50m [920]; Depth Between 0m to 1.50m [412.98]; Depth Between 1.50m to 2.50m [45]; Depth > 2.50m [10]; Depth Between 0m to 1.50m [850]; Depth Between 1.50m to 2.50m [260]; Depth > 2.50m [25]; Depth Between 0m to 1.50m [60]; Depth Between 1.50m to 2.50m [40]; Depth > 2.50m [8] | 10,381.07 | TSE |
| ENG-MT-IR-ML-A-130 |  | Material Approval for Valves of Irrigation Network | 7d | 2026-01-15 | 2026-01-22 | ENG-MT-IR-ML-S-130 | 25d | 0d | Gate valves dia 50 mm [1]; Gate valves dia 100 mm [14]; Gate valves dia 150 mm [5]; Gate valves dia 200 mm [2]; Air valves with dia 50 mm [1]; Washout valve dia 100 mm [2]; Wash out chamber (2500x 2500mm) [2]; Air valve chamber (1000x 1000 mm) [1]; Flow meter chamber (1500x 3000 mm) [1]; Flow meter dia 150 mm [1] | 6,447.6 | TSE |
|  | 5 | **Medium Voltage Network** |  | 2026-01-08 | 2026-01-22 |  |  |  |  |  |  |
|  | MS | **Submission of Material** |  | 2026-01-08 | 2026-01-14 |  |  |  |  |  |  |
|  | 1 | **Cabling Works** |  | 2026-01-08 | 2026-01-14 |  |  |  |  |  |  |
| ENG-MT-MV-ML-S-100 |  | Material Submittal for Medium Voltage Cables of Medium Voltage Network | 6d | 2026-01-08 | 2026-01-14 | ENG-SH-MV-S-100 SS | 25d | 0d |  |  |  |
|  | 3 | **Termination and Testing Works** |  | 2026-01-08 | 2026-01-14 |  |  |  |  |  |  |
| ENG-MT-MV-TF-S-100 |  | Material Submittal for Termination Kits of Medium Voltage Network | 6d | 2026-01-08 | 2026-01-14 | ENG-SH-MV-S-100 SS | 25d | 0d |  |  |  |
|  | MA | **Approval of Material** |  | 2026-01-15 | 2026-01-22 |  |  |  |  |  |  |
|  | 1 | **Cabling Works** |  | 2026-01-15 | 2026-01-22 |  |  |  |  |  |  |
| ENG-MT-MV-ML-A-100 |  | Material Approval for Medium Voltage Cables of Medium Voltage Network | 7d | 2026-01-15 | 2026-01-22 | ENG-MT-MV-ML-S-100, ENG-SH-MV-S-100 | 25d | 0d | Excavation for Trench size 40cm wide and 80cm deep (for 1 cable) [200.56]; Excavation for Trench Size 60cm wide and 80cm deep (for 2 cables) [100.1]; Excavation for Trench Size 90cm wide and 80cm deep (for 3 cables) [139.32]; Excavation for Trench Size 180cm wide and 80cm deep (for 6 cables) [61.92]; Excavation for Trench Size 210 cm wide and 80cm deep (for 7 cables) [72.24]; Excavation for Trench Size 240cm wide and 80cm deep (for 8 cables) [441.7]; Duct bank for (33) cables [126]; Duct bank for (21) cables [200]; Duct bank for (15) cables [60.09]; HV Cable Road Crossing [64.15] | 21,194.01 | MV |
|  | 3 | **Termination and Testing Works** |  | 2026-01-15 | 2026-01-22 |  |  |  |  |  |  |
| ENG-MT-MV-TF-A-100 |  | Material Approval for Termination and Joints Kits of Medium Voltage Network | 7d | 2026-01-15 | 2026-01-22 | ENG-MT-MV-TF-S-100, ENG-SH-MV-S-100 | 25d | 0d |  |  |  |
|  | 7 | **Street Lighting Network** |  | 2026-01-08 | 2026-01-22 |  |  |  |  |  |  |
|  | MS | **Submission of Material** |  | 2026-01-08 | 2026-01-21 |  |  |  |  |  |  |
|  | 1 | **Cabling Works** |  | 2026-01-08 | 2026-01-14 |  |  |  |  |  |  |
| ENG-MT-SL-ML-S-100 |  | Material Submittal for Lighting Cables of Street Lighting Network | 6d | 2026-01-08 | 2026-01-14 | ENG-MT-MV-ML-S-100 SS | 25d | 0d |  |  |  |
|  | 2 | **Lighting Poles Works** |  | 2026-01-08 | 2026-01-14 |  |  |  |  |  |  |
| ENG-MT-SL-S-100 |  | Material Submittal for Lighting Poles Concrete Foundations of Street Lighting Network | 6d | 2026-01-08 | 2026-01-14 | ENG-MT-MV-ML-S-100 SS | 25d | 0d |  |  |  |
| ENG-MT-SL-S-110 |  | Material Submittal for Lighting Poles of Street Lighting Network | 6d | 2026-01-08 | 2026-01-14 | ENG-MT-MV-ML-S-100 SS | 25d | 0d |  |  |  |
| ENG-MT-SL-S-120 |  | Material Submittal for Lighting Fixtures of Street Lighting Network | 6d | 2026-01-08 | 2026-01-14 | ENG-MT-MV-ML-S-100 SS | 25d | 0d |  |  |  |
|  | 3 | **Distribution Panel Board** |  | 2026-01-08 | 2026-01-14 |  |  |  |  |  |  |
| ENG-MT-SL-DB-S-100 |  | Material Submittal for Lighting Distrubution Panel Boards of Street Lighting Network | 6d | 2026-01-08 | 2026-01-14 | ENG-MT-MV-ML-S-100 SS | 25d | 0d |  |  |  |

| ID | WBS | Activity | Duration | Start | Finish | Predecessors | Total float | Free float | Resources | Cost | 01- Network |
| --- | --- | --- | --- | --- | --- | --- | --- | --- | --- | --- | --- |
|  | 5 | **Termination and Testing Works** |  | 2026-01-08 | 2026-01-14 |  |  |  |  |  |  |
| ENG-MT-SL-TF-S-100 |  | Material Submittal for Fuse Boxes of Street Lighting Network | 6d | 2026-01-08 | 2026-01-14 | ENG-MT-MV-ML-S-100 SS | 25d | 0d |  |  |  |
| ENG-MT-SL-TF-S-110 |  | Material Submittal for Cable Lugs of Street Lighting Network | 6d | 2026-01-08 | 2026-01-14 | ENG-MT-MV-ML-S-100 SS | 25d | 0d |  |  |  |
|  | 4 | **Earthing System Works** |  | 2026-01-15 | 2026-01-21 |  |  |  |  |  |  |
| ENG-MT-SL-ES-S-100 |  | Material Submittal for Lighting Earthing of Street Lighting Network | 6d | 2026-01-15 | 2026-01-21 | ENG-MT-MV-ML-S-100 SS, ENG-MT-SL-TF-S-110, ENG-MT-SL-TF-A-110 SS | 25d | 0d |  |  |  |
|  | MA | **Approval of Material** |  | 2026-01-15 | 2026-01-22 |  |  |  |  |  |  |
|  | 1 | **Cabling Works** |  | 2026-01-15 | 2026-01-22 |  |  |  |  |  |  |
| ENG-MT-SL-ML-A-100 |  | Material Approval for Lighting Cables of Street Lighting Network | 7d | 2026-01-15 | 2026-01-22 | ENG-MT-SL-ML-S-100 | 25d | 0d | Road crossing ducts, 2 ways (2 x 150mm HDPE) [228.69]; Road crossing ducts, 2 ways (2 x 110mm UPVC) [90.85]; Road crossing ducts, 3 ways (3 x 110mm UPVC) [30.19]; 4C-300mm2 CU/XLPE / PVC ARMORED CABLE [70]; 4C-240mm2 CU/XLPE / PVC ARMORED CABLE [40]; 4C-185mm2 CU/XLPE / PVC ARMORED CABLE [40]; 4C-50mm2 CU/XLPE / PVC ARMORED CABLE [150]; 4C-16mm2 CU/XLPE / PVC ARMORED CABLE [3485]; 4C-16MM2 CU/XLPE / PVC CABLE [1395]; 1Cx150sq.mm2,Cu, PVC wire [75]; 1Cx120sq.mm2,Cu, PVC wire [75]; 1Cx95sq.mm,Cu, PVC wire [40]; 1Cx70sq.mm2,Cu, PVC wire [20]; 1Cx25sq.mm2,Cu, PVC wire [75]; 1Cx16sq.mm2,Cu, PVC wire [3485]; 1Cx10sq.mm2,Cu, PVC wire [50]; Supply and installation of KWH meter mounting frame including concrete block for installation of KWH meter [6] | 16,976.04 | SL |
|  | 2 | **Lighting Poles Works** |  | 2026-01-15 | 2026-01-22 |  |  |  |  |  |  |
| ENG-MT-SL-A-100 |  | Material Approval for Lighting Poles Concrete Foundations of Street Lighting Network | 7d | 2026-01-15 | 2026-01-22 | ENG-MT-SL-S-100 | 25d | 0d |  |  |  |
| ENG-MT-SL-A-110 |  | Material Approval for Lighting Poles of Street Lighting Network | 7d | 2026-01-15 | 2026-01-22 | ENG-MT-SL-S-110 | 25d | 0d | Lighting poles with 1 arm, height of (12) meters, including the power distribution box, cables, and RCC foundation. [39]; Lighting poles with 2 arms, height of (12) meters, including the power distribution box, cables, and RCC foundation. [36] | 8,986.5 | SL |
| ENG-MT-SL-A-120 |  | Material Approval for Lighting Fixtures of Street Lighting Network | 7d | 2026-01-15 | 2026-01-22 | ENG-MT-SL-S-120 | 25d | 0d | Street Lighting( LED) Luminaire of Output ? 20,965 lumen complete with control gear and lamp, (129.1) WATT. [111] | 1,978.02 | SL |
|  | 3 | **Distribution Panel Board** |  | 2026-01-15 | 2026-01-22 |  |  |  |  |  |  |
| ENG-MT-SL-DB-A-100 |  | Material Approval for Distrubution Panel Boards of Street Lighting Network | 7d | 2026-01-15 | 2026-01-22 | ENG-MT-SL-DB-S-100 | 25d | 0d | Street Lighting panels LCP (01) [1] | 718.83 | SL |
|  | 4 | **Earthing System Works** |  | 2026-01-15 | 2026-01-22 |  |  |  |  |  |  |
| ENG-MT-SL-ES-A-100 |  | Material Approval for Lighting Earthing of Street Lighting Network | 7d | 2026-01-15 | 2026-01-22 | ENG-MT-SL-ES-S-100 SS | 25d | 0d | Including earthing of lighting poles, masts, feeder pillars, unit substations and LV feeders. [75] | 391.5 | SL |
|  | 5 | **Termination and Testing Works** |  | 2026-01-15 | 2026-01-22 |  |  |  |  |  |  |
| ENG-MT-SL-TF-A-100 |  | Material Approval for Fuse Boxes of Street Lighting Network | 7d | 2026-01-15 | 2026-01-22 | ENG-MT-SL-TF-S-100 | 25d | 0d |  |  |  |
| ENG-MT-SL-TF-A-110 |  | Material Approval for Cable Lugs of Street Lighting Network | 7d | 2026-01-15 | 2026-01-22 | ENG-MT-SL-TF-S-110 | 25d | 0d |  |  |  |
|  | 8 | **Telecom Network** |  | 2026-01-15 | 2026-01-22 |  |  |  |  |  |  |
|  | MS | **Submission of Material** |  | 2026-01-15 | 2026-01-21 |  |  |  |  |  |  |
|  | 1 | **Ducts Works** |  | 2026-01-15 | 2026-01-21 |  |  |  |  |  |  |
| ENG-MT-TE-S-100 |  | Material Submittal for Ducts of Telecom Network | 6d | 2026-01-15 | 2026-01-21 | ENG-SH-CTV-S-100 SS | 25d | 0d |  |  |  |
|  | 3 | **Manholes Works** |  | 2026-01-15 | 2026-01-21 |  |  |  |  |  |  |
| ENG-MT-TE-S-110 |  | Material Submittal for Manholes of Telecom Network | 6d | 2026-01-15 | 2026-01-21 | ENG-SH-CTV-S-100 SS | 25d | 0d |  |  |  |

| ID | WBS | Activity | Duration | Start | Finish | Predecessors | Total float | Free float | Resources | Cost | 01- Network | 13 BUILDINGS |
| --- | --- | --- | --- | --- | --- | --- | --- | --- | --- | --- | --- | --- |
|  | 2 | **CCTV System Wroks** |  | 2026-01-15 | 2026-01-21 |  |  |  |  |  |  |  |
| ENG-MT-CTV-S-100 |  | Material Submittal for Civil and Finishes Works of CCTV Complete System | 6d | 2026-01-15 | 2026-01-21 | ENG-SH-CTV-S-100 SS | 25d | 0d |  |  |  |  |
|  | MA | **Approval of Material** |  | 2026-01-15 | 2026-01-22 |  |  |  |  |  |  |  |
|  | 1 | **Ducts Works** |  | 2026-01-15 | 2026-01-22 |  |  |  |  |  |  |  |
| ENG-MT-TE-A-100 |  | Material Approval for Ducts of Telecom Network | 7d | 2026-01-15 | 2026-01-22 | ENG-MT-TE-S-100 SS, ENG-SH-CTV-S-100 SS | 25d | 0d | 2-ways ducts, 50mm diameter [516]; 6-ways ducts, 110mm diameter [2082]; 9-ways ducts, 6 x 160mm & 2 x 100mm [3054]; 6 PVC ducts 150x200 mm (60mm diameter) [162]; 6 PVC ducts 600x800 mm (120mm diameter) [282]; 6 PVC ducts 800x800 mm (170mm diameter) [402] | 38,332.26 | TE |  |
|  | 3 | **Manholes Works** |  | 2026-01-15 | 2026-01-22 |  |  |  |  |  |  |  |
| ENG-MT-TE-A-110 |  | Material Approval for Manholes of Telecom Network | 7d | 2026-01-15 | 2026-01-22 | ENG-MT-TE-S-110 SS, ENG-SH-CTV-S-100 SS | 25d | 0d | Manhole Type 2 (1600 x 1600 x 2000) [25]; Manhole Type 3 (1200 x 1200 x 2000) [31] | 8,003.88 | TE |  |
|  | 2 | **CCTV System Wroks** |  | 2026-01-15 | 2026-01-22 |  |  |  |  |  |  |  |
| ENG-MT-CTV-A-100 |  | Material Approval for Civil and Finishes Works of CCTV Complete System | 7d | 2026-01-15 | 2026-01-22 | ENG-MT-CTV-S-100 SS, ENG-SH-CTV-S-100 SS | 25d | 0d | 6 PVC ducts 200x150 mm (60mm diameter) [138]; 2-ways ducts, 50mm diameter [498] | 1,345.14 | TE |  |
|  | 1 | **Superstructure Works** |  | 2025-12-23 | 2026-01-22 |  |  |  |  |  |  |  |
|  | SL1111 | **Pump Stations** |  | 2025-12-23 | 2026-01-11 |  |  |  |  |  |  |  |
|  | 1 | **Submission of Material** |  | 2025-12-23 | 2025-12-30 |  |  |  |  |  |  |  |
| ENG-MT-PS-CV-S-140 |  | Material Submittal for Civil Works for Sewage Pump Stations | 7d | 2025-12-23 | 2025-12-30 | MS-CS-PS SS | 5.25d | 0d |  |  |  |  |
|  | 2 | **Approval of Material** |  | 2025-12-31 | 2026-01-11 |  |  |  |  |  |  |  |
| ENG-MT-PS-CV-A-150 |  | Material Approval for Civil Works for Sewage Pump Stations | 10d | 2025-12-31 | 2026-01-11 | ENG-MT-PS-CV-S-140 | 5.25d | 0d | Price [108644 SAR] | 108,644.24 | UB | PUMP |
|  | SL | **Lift Station** |  | 2025-12-23 | 2026-01-11 |  |  |  |  |  |  |  |
|  | 1 | **Submission of Material** |  | 2025-12-23 | 2025-12-30 |  |  |  |  |  |  |  |
| ENG-MT-SLS-CV-S-100 |  | Material Submittal for Civil Works for Lift Stations | 7d | 2025-12-23 | 2025-12-30 | MS-CS-PS SS | 3.25d | 0d |  |  |  |  |
|  | 2 | **Approval of Material** |  | 2025-12-31 | 2026-01-11 |  |  |  |  |  |  |  |
| ENG-MT-SLS-CV-A-110 |  | Material Approval for Civil Works for Sewage Lift Stations | 10d | 2025-12-31 | 2026-01-11 | ENG-MT-SLS-CV-S-100 | 3.25d | 0d | Price [84501.1 SAR] | 84,501.07 | UB | LIFT |
|  | TE | **Storm Drainage Ponds** |  | 2025-12-31 | 2026-01-19 |  |  |  |  |  |  |  |
|  | 1 | **Submission of Material** |  | 2025-12-31 | 2026-01-07 |  |  |  |  |  |  |  |
| ENG-MT-DPO-CV-S-100 |  | Material Submittal for Civil Works for Storm Drainage Ponds | 7d | 2025-12-31 | 2026-01-07 | ENG-MT-PS-CV-A-150 SS | 28d | 0d |  |  |  |  |
|  | 2 | **Approval of Material** |  | 2026-01-08 | 2026-01-19 |  |  |  |  |  |  |  |
| ENG-MT-DPO-CV-A-110 |  | Material Approval for Civil Works for Storm Drainage Ponds | 10d | 2026-01-08 | 2026-01-19 | ENG-MT-DPO-CV-S-100 | 28d | 0d | Finished grouted riprap for Pond 300mm as per drawings [3720] | 13,392 | UB |  |

| ID | WBS | Activity | Duration | Start | Finish | Predecessors | Total float | Free float | Resources | Cost | 01- Network | 13 BUILDINGS |
| --- | --- | --- | --- | --- | --- | --- | --- | --- | --- | --- | --- | --- |
|  | SL111 | **Storage Tank (TSE)** |  | 2025-12-31 | 2026-01-19 |  |  |  |  |  |  |  |
|  | 1 | **Submission of Material** |  | 2025-12-31 | 2026-01-07 |  |  |  |  |  |  |  |
| ENG-MT-TSE-CV-S-130 |  | Material Submittal for Civil Works for Storage Tank (TSE) | 7d | 2025-12-31 | 2026-01-07 | ENG-MT-SLS-CV-S-100 | 9.75d | 0d |  |  |  |  |
|  | 2 | **Approval of Material** |  | 2026-01-08 | 2026-01-19 |  |  |  |  |  |  |  |
| ENG-MT-TSE-CV-A-140 |  | Material Approval for Civil Works for Storage Tank (TSE) | 10d | 2026-01-08 | 2026-01-19 | ENG-MT-TSE-CV-S-130 | 9.75d | 0d | Glass Fused Bolted (GLS) 1500 m3 Tank with associated accessories & manufacturer recommendation for the foundation [1] | 36,905.64 | PW |  |
|  | SL11 | **Gaurd Room** |  | 2025-12-23 | 2026-01-19 |  |  |  |  |  |  |  |
|  | 1 | **Submission of Material** |  | 2025-12-23 | 2026-01-03 |  |  |  |  |  |  |  |
| ENG-MT-GR-CV-S-120 |  | Material Submittal for Civil Works for Gaurd Room | 10d | 2025-12-23 | 2026-01-03 | MS-CS-PS SS | 10.75d | 0d |  |  |  |  |
|  | 2 | **Approval of Material** |  | 2026-01-04 | 2026-01-19 |  |  |  |  |  |  |  |
| ENG-MT-GR-CV-A-130 |  | Material Approval for Civil Works for Gaurd Room | 14d | 2026-01-04 | 2026-01-19 | ENG-MT-GR-CV-S-120 | 10.75d | 0d | Slab on Grade [20]; Slabs [31]; Lightweight Concrete Roof insulation as per Architect's specification [155]; Insulated brickwork. with expanded polystyrene 200mm thick; vertical straight wall complete with accessories . [102]; Common brickwork. 150mm thick; vertical straight wall complete with accessories. [180]; 2 perpendicular layers of cold bitumen coats [155]; 2 layer of 4mm HDPE membrane, 2 perpendicular layers cold bitumen coats [155]; 1 layer EPOXY Paint 300 micron [155]; Membrane fully bonded to prime deck and upstand [155]; Geotextile Filter membrane uv resistance [155]; 85mm thick thermal insulation [155]; 1.5mm thick epdm waterproofing membrane [155]; CW01 - 4500 mm width x 3700 mm height [1]; CW02 - 4500 mm width x 3700 mm height [1]; CW03 - 4500 mm width x 3700 mm height [1]; CW04 - 4500 mm width x 3700 mm height [1]; CW05 - 7500 mm width x 4250 mm height [1]; CW06 - 7500 mm width x 4250 mm height [1]; W01 - 1000 mm width x 2000 mm height [1]; W02 - 2000 mm width x 2000 mm height [2]; W03 - 2000 mm width x 1000 mm height [3]; D2 - 900 mm x 2200 mm height temper door [7]; D3 - 950 mm x 2000 mm height temper door [2]; Supply and install 300*300mm terrazzo tiles with 150mm high skirting at perimeter with approv [133]; Supply and install 300*300mm glazed ceramic wall tiles on cement mortar and including rough [95]; Supply and install internal plastering and 2 coats of acrylic paint at walls includin [216]; Supply and install 300*300mm glazed ceramic wall tiles on cement mortar and including rough and smooth p [12]; Supply and install 600*600mm porcelain tiles with approved quality on 30 mm mortar inclu [125]; Supply and install 12.5mm thk, gypsum board suspended ceiling including s [5]; Office Chairs [4]; Office Tables [4]; Guard Stand [2]; Magnetic Control Access barrier, Automatic Vehicular Barriers to be installed on ground with magnetic access [6]; Supply and install Hand Wash Basin with Water Tap, angle valve, P-trap connected to 50mm diameter s [3]; Supply and install paper towel dispenser, surface mounted, satin finish stainless steel as per approv [3]; Supply and install mirror, size 460*910mm as per approved sample including frames, backing and all accessories to complete. [3]; Supply and install towel ring , surface mounted, satin finish stainless steel as per approved sample including accessories. [3]; Kitchen sink with single bowl with hot/cold water mixer. [3]; Supply and install Base mounted flush tank water Western water closet system with lid connected to 110mm soil pipe [2]; Gate Valves [2]; Slow Closing Valve [2]; 1 meter length 10mm diameter Flexible Hose with insulated handle complete with fork support, index push, vacuum breaker [2]; 50mm diameter [37]; 75mm diameter [4]; 80mm diameter [11]; 100mm diameter [2]; 110mm diameter [12]; 13mm diameter [1]; 15mm diameter [1]; 20mm diameter [1]; 25mm diameter [19]; 32mm diameter [35]; 40mm diameter [12]; 50mm diameter [1]; 20mm diameter [5]; 25mm diameter [12]; Isolation Valve Size 20 [3]; Isolation Valve Size 25 [3]; Isolation Valve Size 32 [5]; Isolation Valve Size 40 [1]; Isolation Valve Size 50 [1]; 20 mm diameter spray head for cold water supply [3]; Supply and install Electric Water Heater set with connection [3]; Water meter complete with accessories. [3]; Roof drain [3]; Vent on a roof to exhaust air [3]; Floor drain 100x80mm [4]; Gully trap 300x300 mm [3]; inspection chamber, size 800x900x1000 [3]; Mini split actual capacity 2 Ton [1]; Ducted split actual capacity 4 Ton [2]; Supply, fabricate, install and testing factory fabricated metal ducts with flanges complete with supports, vanes, [40]; Supplying, installation testing & commissioning of external insulation on ducts [40]; Supply, fix, testing and commissioning of exhaust air/fresh air louvers of powder coated extruded aluminium construction. [1]; Providing, fixing, testing and commissioning of powder coated extruded aluminum sections grills and diffusers with dampers. [2]; Air Grills 150mm x150mm [2]; Air Diffuser 600mm x 600mm [6]; Supply, Installation & Testing of 2 hours Fire rated system for closing the openings between roo [1]; 4.5 KG CO2 Type Fire Extinguishers [4]; 6 KG ABC Type Fire Extinguishers [4]; Floor cleanout, size 75 mm diameter [2]; Floor cleanout, size 110 mm diameter [4]; GRP water tanks capacity of each 1000 liter complete with all fittings, all valves and concrete pad [3]; Guard Room 1 [1]; Guard Room 2 [1]; Guard Room 3 [1]; 30A, 2P AC Disconnect Switch [11]; 20A Duplex Receptacle Floor Mounted [12]; Twin Socket outlet [6]; Twin Socket outlet, Weather Proof [5]; Single gang Lighting switch [6]; 2way Single gang Lighting switch [2]; 36W LED linear Pendant lighting [14]; 36W LED Emergency linear Pendant lighting [6]; 13W recess mounted LED down light fitting [8]; 13W recess emergency mounted LED down light fitting with 1.5 Hr Battery [6]; 10.4W LED Exit light with 1.5 Hr Battery [3]; 4mm2 Cu./FRLSZH Cable [600]; 6mm2 Cu./FRLSZH Cable [110]; 8 Port Industrial PoE Switch 10/100BaseT (0 deg to +70 deg. Celsius) [31]; 06C Optical Fiber SM [2505]; 48C Optical Fiber SM [7010]; 48 Core Splice Closure [7]; Boom Barrier at Security Guard Room [6]; Pedestrian turnstile at Security Guard Room [6]; Access Control Unit [3]; Access Card Reader [3]; Magnetic Lock [3]; Break Glass [3]; Exit Push button [3]; Door Sensor [3]; Biometrics Reader [2]; Pole/Bollard mounted IP( PoE), Automatic Number Plate Recognition (ANPR, camera, 5MP,IP 66, IR illumin [6]; 12U rack dimension (W x H x L) 600 x 625 x 600 mm [1]; Fire Alarm Control panel with fire alarm zoning with Mimic panel with fire alarm zoning [4]; Main Fire Alarm Control panel with fire alarm zoning with Mimic panel with fire alarm zoning [1]; Supply and installation of the addressable manual call point with operation safety glass breaking and pushbutton [17]; Supply and installation of the photoelectric heat & smoke detector with base [41]; Sounder With Beacon [20]; Addressable Control module for Sounders [20]; Addressable Control module for HVAC System [2]; Addressable Monitor module for HVAC System [2]; 2C x 1.5 Sqm FR Rated Armored - Cable For Loop Wiring [1800]; DACT (Auto - Dailer) for 24x7 Civil Defence [1]; Transmission Communication cable - Fiber Optics 12Core [2500]; Transmission Communication cable - Ethernet Cable [500]; Supply, install to site and installation of power supply system for fire alarm control panel [1]; Supply, install to site and installation of power cable [1600]; Fire Fighter’s Telephone Centre [1]; Fireman’s Telephone Jack [2]; Voice Command Center [1] | 62,361.63 | GR&FE |  |
|  | SL1 | **Fence** |  | 2025-12-23 | 2026-01-19 |  |  |  |  |  |  |  |
|  | 1 | **Submission of Material** |  | 2025-12-23 | 2026-01-03 |  |  |  |  |  |  |  |
| ENG-MT-FE-CV-S-110 |  | Material Submittal for Civil Works for Fence | 10d | 2025-12-23 | 2026-01-03 | MS-CS-PS SS | 28d | 0d |  |  |  |  |
|  | 2 | **Approval of Material** |  | 2026-01-04 | 2026-01-19 |  |  |  |  |  |  |  |
| ENG-MT-FE-CV-A-120 |  | Material Approval for Civil Works for Fence | 14d | 2026-01-04 | 2026-01-19 | ENG-MT-FE-CV-S-110 | 28d | 0d | 100 mm thickness lean concrete under the foundation [1500]; Foundation [7310]; Walls [1960]; Beams [288]; Columns [372]; Common brickwork. 300mm thick; vertical straight wall complete with accessories. [8775]; Two Layers of Bituminous Coating [39170]; 20x20 Approved Polysulfide Joint Sealant [415]; Supply and install 33mm thick Lexan cladding blue complete with necessary framings [1114.96]; Supply and install 50mm thick random cut stone cladding complete with 600m [14316.8]; Supply and install External plastering to walls and columns min. 15mm thick with cement mortar of specified grade including [16765]; Supply and install 2 coats of weatherproof paint at walls including one prime coat and [16765]; Guard room coping 350mm [57]; Guard room coping 450mm [27]; Stone coping 500mm [2555]; Stone coping 525mm [1224]; Supply and install MODON Signage with Logo Type 1 [24]; Supply and install MODON Signage Type 2 [24]; Supply and install "Triangle Style" signage [55]; Junction Box for lighting fixture [136]; Trench excavation to receive 2 nos 50mm diameter PVC Conduit, sand bedding and embedded with sa [3505]; Supply, Install, fixings, testing and commissioning 80W LED Projector waterproof DJ effect light including c [3]; Earth Pit [17]; Grounding rod 20mmX3m [9]; Grounding rod with Pit 20mmX3m [4]; Earthing Bar [3]; 120mm2 Tinned copper wire [200]; IR Intrusion Detection System Quad Beams (Tx & Rx) (SL-350 QDM) [60]; Control cable [3110]; CAT6A cable [3110]; Field Equipment Cabinet enclosed outdoor complete with precast concrete footing, suitable for parame [19]; Supply and install 800mm x 800mm x 800mm height concrete handhole with bituminous paint all aroun [19]; 800mm depth minimum Trench excavation to receive 3 nos 50mm diameter PVC Conduit with spacer, sand bedding an [1500]; Hot dipped galvanized cable conduits for CAT6A cable and Control Cables embedded to wall [420]; 400V, 3PH, 60Hz lighting control panel (LCP-02) [1]; 38W, 230V, 1PH, 60Hz fence, led linear uplight lighting, IP66 [136]; 4C-16mm2 CU/XLPE/PVC direct buried armored cable [1300]; 4C-10mm2 CU/XLPE/PVC direct buried armored cable [850]; 16mm2 CU/PVC wire [1300]; 10mm2 CU/PVC wire [850]; 4C-16mm2 CU/XLPE/PVC direct buried armored cable [4080]; 16mm2 CU/PVC wire [4080] | 692,933.53 | GR&FE |  |
|  | SL12 | **Softscape and Planting Works** |  | 2026-01-15 | 2026-01-22 |  |  |  |  |  |  |  |
|  | 1 | **Submission of Material** |  | 2026-01-15 | 2026-01-22 |  |  |  |  |  |  |  |
| ENG-MT-PL-CV-S-150 |  | Material Submittal for Softscape and Planting Works | 7d | 2026-01-15 | 2026-01-22 | ENG-SH-MRK-A-110 SS | 25d | 0d |  |  |  |  |
|  | 2 | **Approval of Material** |  | 2026-01-15 | 2026-01-22 |  |  |  |  |  |  |  |
| ENG-MT-PL-CV-A-160 |  | Material Approval for Softscape and Planting Works | 7d | 2026-01-15 | 2026-01-22 | ENG-MT-PL-CV-S-150 SS | 25d | 0d | Price [101924 SAR] | 101,924.12 | UB | LS |
|  | 1 | **Long Lead Time Items** |  | 2026-01-08 | 2026-01-22 |  |  |  |  |  |  |  |
|  | 1 | **Infrastructure Networks** |  | 2026-01-08 | 2026-01-22 |  |  |  |  |  |  |  |
|  | 2 | **CCTV System Wroks of Telecom Network** |  | 2026-01-08 | 2026-01-22 |  |  |  |  |  |  |  |
|  | 1 | **Submission of Material** |  | 2026-01-08 | 2026-01-14 |  |  |  |  |  |  |  |
| ENG-MT-CTV-S-110 |  | Material Submittal for Low Current Works of CCTV Complete System with All Accessories | 6d | 2026-01-08 | 2026-01-14 | ENG-SH-RD-S-100 | 25d | 0d |  |  |  |  |

| ID | WBS | Activity | Duration | Start | Finish | Predecessors | Total float | Free float | Resources | Cost | 01- Network |
| --- | --- | --- | --- | --- | --- | --- | --- | --- | --- | --- | --- |
|  | 2 | **Approval of Material** |  | 2026-01-15 | 2026-01-22 |  |  |  |  |  |  |
| ENG-MT-CTV-A-110 |  | Material Approval for Low Current Works of CCTV Complete System with All Accessories | 7d | 2026-01-15 | 2026-01-22 | ENG-MT-CTV-S-110 | 25d | 0d | NVR Server with RAID (5, 6 or 10) to record all cameras storage 80TB with all hardware / software / licenses etc. [2]; VMS Server with RAID (5, 6 or 10) complete Hardware / Software with one Color Laser Printer and all associated [2]; Licenses for Cameras, Workstations and Keyboards [1]; Work Station (MMI with two monitors each, for Monitoring for CCTV & ACS) [1]; Keyboard with joystick for CCTV with all accessories as per specification [1]; Pole mounted IP( PoE) Fixed camera, 5MP,IP 66, IR illumination, 3-8mm varifocal, auto iris lens type [44]; Wall mounted IP( PoE) Fixed camera, 5MP,IP 66, IR illumination, 3-8mm varifocal, auto iris lens type [78]; 5MP Dome camera ceiling Mounted IP (PoE) indoor [17]; 5MP PTZ Multi Sensor Camera IP(PoE) 360 Degree View Outdoor with accessories (IP 66) [7]; 8 Port Industrial PoE Switch 10/100BaseT (0 deg to +70 deg. Celsius) [12]; Filed Equipment cabinet (FEC), with fan and ventilation, NEMEX 4X ,door, minimum size (600x600x400mm) [12]; IP Phone Communication server (hot standby) 50 Port equipped, Gateway, Gatekeeper, H.323, SIP, redundant Power etc. [3]; IP Phone Voice gateway [1]; Voice IP Phone [1]; NMS Server for IP phone and NETWORK Elements [1]; NMS Workstation [1]; Firm Ware, software & licenses [1]; Data Cable [1]; Power Cable [1]; Layer 3, 24 Port non-PoE switch10/1000BaseT/LX (-40 deg to +70 deg. Celsius), stack module and associated [2]; Layer 2, 24 Port non-PoE switch10/1000BaseT (-40 deg to +70 deg. Celsiu [6]; Network Management System Server [2]; Network Management System workstation [1]; 42U rack dimension (W x H x L) 800 x 2000 x 1000 mm [2]; 12U rack dimension (W x H x L) 600 x 625 x 600 mm [1]; 06C Optical Fiber SM [1820]; 48C Optical Fiber SM [5800]; 48 Core Splice Closure [7]; Optical fiber patch cord 5m [24]; Data Cable (STP CAT 6A) [10320]; 3C Power Cable armored 1.5mm2 [10320]; 3C Power Cable armored 2.5 mm2 [10320]; UTP CAT6A Patch Cord 1m/3m/5m [23]; Access Control Unit [5]; Access Card Reader [5]; Magnetic Lock [5]; Break Glass [4]; Exit Push button [5]; Door Sensor [5]; Biometrics Reader [8]; Smart Card Printer [1]; Card Issue Work Station [1]; Photographic Camera with stand [1]; Interface modules with CCTV, Fire and other systems [1] | 98,056.59 | TE |
|  | 2 | **Superstructure Works** |  | 2026-01-14 | 2026-01-22 |  |  |  |  |  |  |
|  | SL | **Pump Stations** |  | 2026-01-14 | 2026-01-22 |  |  |  |  |  |  |
|  | 1 | **Submission of Material** |  | 2026-01-14 | 2026-01-21 |  |  |  |  |  |  |
| ENG-MT-SPS-MC-S-100 |  | Material Submittal for Electromechanical Works for Pump Stations | 7d | 2026-01-14 | 2026-01-21 | ENG-SH-SPS-S-150 SS | 25d | 0d |  |  |  |
|  | 2 | **Approval of Material** |  | 2026-01-14 | 2026-01-22 |  |  |  |  |  |  |
| ENG-MT-SPS-MC-A-110 |  | Material Approval for Electromechanical Works for Pump Stations | 8d | 2026-01-14 | 2026-01-22 | ENG-MT-SPS-MC-S-100 SS | 25d | 0d |  |  |  |
|  | SL1 | **Storage Tank (TSE)** |  | 2026-01-14 | 2026-01-22 |  |  |  |  |  |  |
|  | 1 | **Submission of Material** |  | 2026-01-14 | 2026-01-21 |  |  |  |  |  |  |
| ENG-MT-TSE-MC-S-110 |  | Material Submittal for Electromechanical Works for Storage Tank (TSE) | 7d | 2026-01-14 | 2026-01-21 | ENG-MT-SPS-MC-S-100 SS | 25d | 0d |  |  |  |
|  | 2 | **Approval of Material** |  | 2026-01-14 | 2026-01-22 |  |  |  |  |  |  |
| ENG-MT-TSE-MC-A-120 |  | Material Approval for Electromechanical Works for Storage Tank (TSE) | 8d | 2026-01-14 | 2026-01-22 | ENG-MT-TSE-MC-S-110 SS | 25d | 0d |  |  |  |
|  | PROC | **Procurement Cycle** |  | 2026-01-12 | 2026-12-10 |  |  |  |  |  |  |
|  | NLL | **Short Lead Time Items** |  | 2026-01-12 | 2026-12-10 |  |  |  |  |  |  |
|  | INF | **Infrastructure Networks** |  | 2026-01-24 | 2026-12-10 |  |  |  |  |  |  |
|  | RD | **Road Works** |  | 2026-01-24 | 2026-12-10 |  |  |  |  |  |  |
|  | PO | **Issuance of Purchase Orders** |  | 2026-01-24 | 2026-02-05 |  |  |  |  |  |  |
|  | 1 | **Road Works** |  | 2026-01-24 | 2026-02-05 |  |  |  |  |  |  |
| PRO-RD-PO-100 |  | Issuance of Purchase Order for Subgrade of Road Works | 12d | 2026-01-24 | 2026-02-05 | ENG-MT-RD-A-100 | 44d | 0d |  |  |  |
| PRO-RD-PO-110 |  | Issuance of Purchase Order for Aggregate Base Course of Road Works | 12d | 2026-01-24 | 2026-02-05 | ENG-MT-RD-A-110 | 38d | 0d |  |  |  |
| PRO-RD-PO-120 |  | Issuance of Purchase Order for Prime Coat of Road Works | 12d | 2026-01-24 | 2026-02-05 | ENG-MT-RD-A-120 | 36d | 0d |  |  |  |
| PRO-RD-PO-130 |  | Issuance of Purchase Order for Bituminous Base & Wearing Courses of Road Works | 12d | 2026-01-24 | 2026-02-05 | ENG-MT-RD-A-130 | 38d | 0d |  |  |  |
|  | 2 | **Pavement Works** |  | 2026-01-24 | 2026-02-05 |  |  |  |  |  |  |
| PRO-RD-PO-140 |  | Issuance of Purchase Order for Interlock Tiles of Landscaping | 12d | 2026-01-24 | 2026-02-05 | ENG-MT-RD-A-140 | 41d | 0d |  |  |  |
| PRO-RD-PO-150 |  | Issuance of Purchase Order for Curbstones of Landscaping | 12d | 2026-01-24 | 2026-02-05 | ENG-MT-RD-A-150 | 36d | 0d |  |  |  |

| ID | WBS | Activity | Duration | Start | Finish | Predecessors | Total float | Free float |
| --- | --- | --- | --- | --- | --- | --- | --- | --- |
|  | 3 | **Traffic Signs Boards and Roads Marking** |  | 2026-01-24 | 2026-02-05 |  |  |  |
| PRO-RD-PO-160 |  | Issuance of Purchase Order for Traffic Signs Boards of Road Works | 12d | 2026-01-24 | 2026-02-05 | ENG-MT-TS-A-100 | 43d | 0d |
| PRO-RD-PO-170 |  | Issuance of Purchase Order for Road Markings of Road Works | 12d | 2026-01-24 | 2026-02-05 | ENG-MT-TS-A-110 | 44d | 0d |
|  | MF | **Manufacturing of Material** |  | 2026-02-07 | 2026-10-27 |  |  |  |
|  | 1 | **Road Works** |  | 2026-02-07 | 2026-10-27 |  |  |  |
| PRO-RD-MF-100 |  | Manufacturing of Subgrade for Road Works | 180d | 2026-02-07 | 2026-09-21 | PRO-RD-PO-100 | 44d | 0d |
| PRO-RD-MF-110 |  | Manufacturing of Aggregate Base Course for Road Works | 200d | 2026-02-07 | 2026-10-15 | PRO-RD-PO-110 | 38d | 0d |
| PRO-RD-MF-120 |  | Manufacturing of Prime Coat for Road Works | 210d | 2026-02-07 | 2026-10-27 | PRO-RD-PO-120 | 36d | 0d |
| PRO-RD-MF-130 |  | Manufacturing of Bituminous Base & Wearing Courses for Road Works | 210d | 2026-02-07 | 2026-10-27 | PRO-RD-PO-130 | 38d | 0d |
|  | 2 | **Pavement Works** |  | 2026-02-07 | 2026-10-15 |  |  |  |
| PRO-RD-MF-140 |  | Manufacturing of Interlock Tiles for Landscaping | 200d | 2026-02-07 | 2026-10-15 | PRO-RD-PO-140 | 41d | 0d |
| PRO-RD-MF-150 |  | Manufacturing of Curbstones for Landscaping | 200d | 2026-02-07 | 2026-10-15 | PRO-RD-PO-150 | 36d | 0d |
|  | 3 | **Traffic Signs Boards and Roads Marking** |  | 2026-02-07 | 2026-10-15 |  |  |  |
| PRO-RD-MF-160 |  | Manufacturing of Traffic Signs Boards for Road Works | 185d | 2026-02-07 | 2026-09-28 | PRO-RD-PO-160 | 43d | 0d |
| PRO-RD-MF-170 |  | Manufacturing of Road Markings for Road Works | 200d | 2026-02-07 | 2026-10-15 | PRO-RD-PO-170 | 44d | 0d |
|  | 1DL | **1st Material Delivery & Site Inspection** |  | 2026-09-21 | 2026-11-10 |  |  |  |
|  | 1 | **Road Works** |  | 2026-09-21 | 2026-11-10 |  |  |  |
| PRO-RD-1DL-100 |  | 1ST Material Delivery for Subgrade of Road Works | 12d | 2026-09-21 | 2026-10-06 | PRO-RD-MF-100 | 44d | 0d |
| PRO-RD-1DL-110 |  | 1ST Material Delivery for Aggregate Base Course of Road Works | 12d | 2026-10-15 | 2026-10-29 | PRO-RD-MF-110 | 38d | 0d |
| PRO-RD-1DL-120 |  | 1ST Material Delivery for Prime Coat of Road Works | 12d | 2026-10-27 | 2026-11-10 | PRO-RD-MF-120 | 36d | 0d |
| PRO-RD-1DL-130 |  | 1ST Material Delivery for Bituminous Base & Wearing Courses of Road Works | 12d | 2026-10-27 | 2026-11-10 | PRO-RD-MF-130 | 38d | 0d |
|  | 2 | **Pavement Works** |  | 2026-10-15 | 2026-10-29 |  |  |  |
| PRO-RD-1DL-140 |  | 1ST Material Delivery for Interlock Tiles of Landscaping | 12d | 2026-10-15 | 2026-10-29 | PRO-RD-MF-140 | 41d | 0d |
| PRO-RD-1DL-150 |  | 1ST Material Delivery for Curbstones of Landscaping | 12d | 2026-10-15 | 2026-10-29 | PRO-RD-MF-150 | 36d | 0d |

| ID | WBS | Activity | Duration | Start | Finish | Predecessors | Total float | Free float | Resources | Cost | 01- Network |
| --- | --- | --- | --- | --- | --- | --- | --- | --- | --- | --- | --- |
|  | 3 | **Traffic Signs Boards and Roads Marking** |  | 2026-09-28 | 2026-11-02 |  |  |  |  |  |  |
| PRO-RD-1DL-160 |  | 1ST Material Delivery for Traffic Signs Boards of Road Works | 15d | 2026-09-28 | 2026-10-15 | PRO-RD-MF-160 | 43d | 0d |  |  |  |
| PRO-RD-1DL-170 |  | 1ST Material Delivery for Road Markings of Road Works | 15d | 2026-10-15 | 2026-11-02 | PRO-RD-MF-170, PRO-RD-1DL-160 | 44d | 0d |  |  |  |
|  | DL | **Material Delivery & Site Inspection** |  | 2026-10-06 | 2026-12-10 |  |  |  |  |  |  |
|  | 1 | **Pre-Bituminous Construction** |  | 2026-10-06 | 2026-11-18 |  |  |  |  |  |  |
| PRO-R25-RD-DL-100 |  | Material Delivery & Site Inspection for Subgrade of Road Works | 20d | 2026-10-06 | 2026-10-29 | PRO-RD-MF-100, PRO-RD-1DL-100 | 44d | 3d | Subgrade [2963] | 29,037.4 | RD |
| PRO-R25-RD-DL-110 |  | Material Delivery & Site Inspection for Aggregate Base Course of Road Works | 17d | 2026-10-29 | 2026-11-18 | PRO-RD-MF-110 SS, PRO-RD-MF-110, PRO-RD-1DL-110 | 38d | 0d | Aggregate base course [1482] | 29,936.4 | RD |
|  | 4 | **Bituminous Construction** |  | 2026-11-10 | 2026-12-10 |  |  |  |  |  |  |
| PRO-R25-RD-DL-160 |  | Material Delivery & Site Inspection for Prime Coat of Road Works | 26d | 2026-11-10 | 2026-12-10 | PRO-RD-MF-120, PRO-RD-MF-120 FF, PRO-RD-1DL-120 | 36d | 0d | Bituminous base course (Grading I - Class A), including Prime Coat (MC1) [494] | 60,465.6 | RD |
| PRO-R25-RD-DL-170 |  | Material Delivery & Site Inspection for Bituminous Base & Wearing Courses of Road Works | 26d | 2026-11-10 | 2026-12-10 | PRO-RD-MF-130, PRO-RD-1DL-130 | 38d | 2d | Bituminous concrete wearing course, (Grading I - Class A), including tack coat (RC2) [494] | 61,058.4 | RD |
|  | 2 | **Pavement Works** |  | 2026-10-29 | 2026-11-29 |  |  |  |  |  |  |
| PRO-R25-RD-DL-120 |  | Material Delivery & Site Inspection of Interlock Tiles for Landscaping | 26d | 2026-10-29 | 2026-11-29 | PRO-RD-MF-140 SS, PRO-RD-MF-140, PRO-RD-1DL-140 | 41d | 5d | 60mm thick [27926]; 80mm thick [38996.8] | 1,054,967.25 | RD |
| PRO-R25-RD-DL-130 |  | Material Delivery & Site Inspection of Curbstones for Landscaping | 26d | 2026-10-29 | 2026-11-29 | PRO-RD-MF-150, PRO-RD-1DL-150 | 36d | 0d | Precast Concrete Curbstone 150X300X900 Type (K1-A) [7267]; Precast Concrete Curbstone 100X200X500 Type (K4) [5638]; Precast Concrete Curbstone 150X300X500 Type (K1-B) [2210]; Precast Concrete Curbstone Type (K1-C) [99]; Flush Kerb Type (D) [188] | 147,859.2 | RD |
|  | 3 | **Traffic Signs Boards and Roads Marking** |  | 2026-10-15 | 2026-12-10 |  |  |  |  |  |  |
| PRO-R25-RD-DL-140 |  | Material Delivery & Site Inspection of Traffic Signs Boards For Road Works | 48d | 2026-10-15 | 2026-12-10 | PRO-RD-MF-160, PRO-RD-1DL-160 | 43d | 7d | Traffic signs, ground mounted, Sheet Aluminum, (breakaway) Single post IPE, with all accessories [99]; Precast Concrete Blister Warning Tactile Paver Brown Finish 300*300*60mm [64] | 21,312 | RD |
| PRO-R25-RD-DL-150 |  | Material Delivery & Site Inspection of Road Markings For Road Works | 30d | 2026-11-02 | 2026-12-07 | PRO-RD-MF-170, PRO-RD-1DL-170 | 44d | 8d | Retroreflective Thermoplastic White Traffic lines [965]; Retroreflective Thermoplastic Yellow, Traffic lines [1445] | 20,244 | RD |
|  | IR1 | **Softscape and Planting Works** |  | 2026-01-24 | 2026-09-01 |  |  |  |  |  |  |
|  | PO | **Issuance of Purchase Orders** |  | 2026-01-24 | 2026-01-29 |  |  |  |  |  |  |
|  | 1 | **Main Line Pipes** |  | 2026-01-24 | 2026-01-29 |  |  |  |  |  |  |
| PRO-IR-PO-140 |  | Issuance of Purchase Order for Softscape and Planting Works | 6d | 2026-01-24 | 2026-01-29 | ENG-MT-IR-ML-A-140 | 42d | 0d |  |  |  |
| PRO-IR-PO-150 |  | Issuance of Purchase Order for Site Furnishings (Seating Bench,Stone Boulders and Gravel) | 6d | 2026-01-24 | 2026-01-29 | ENG-MT-IR-ML-A-150 | 42d | 0d |  |  |  |
|  | MF | **Manufacturing of Material** |  | 2026-01-31 | 2026-08-04 |  |  |  |  |  |  |
|  | 1 | **Main Line Pipes** |  | 2026-01-31 | 2026-08-04 |  |  |  |  |  |  |
| PRO-IR-MF-140 |  | Manufacturing of Softscape and Planting Works | 125d | 2026-01-31 | 2026-07-12 | PRO-IR-PO-140 | 42d | 0d |  |  |  |
| PRO-IR-MF-150 |  | Manufacturing of Valves for Site Furnishings (Seating Bench,Stone Boulders and Gravel) | 145d | 2026-01-31 | 2026-08-04 | PRO-IR-PO-150 | 42d | 0d |  |  |  |

| ID | WBS | Activity | Duration | Start | Finish | Predecessors | Total float | Free float |
| --- | --- | --- | --- | --- | --- | --- | --- | --- |
|  | 1DL | **1st Material Delivery & Site Inspection** |  | 2026-07-12 | 2026-08-11 |  |  |  |
|  | 1 | **Main Line Pipes** |  | 2026-07-12 | 2026-08-11 |  |  |  |
| PRO-IR-1DL-140 |  | 1ST Material Delivery for Softscape and Planting Works | 6d | 2026-07-12 | 2026-07-19 | PRO-IR-MF-140 | 42d | 0d |
| PRO-IR-1DL-150 |  | 1ST Material Delivery for Site Furnishings (Seating Bench,Stone Boulders and Gravel) | 6d | 2026-08-04 | 2026-08-11 | PRO-IR-MF-150 | 42d | 0d |
|  | DL | **Material Delivery & Site Inspection** |  | 2026-07-19 | 2026-09-01 |  |  |  |
|  | 1 | **Main Line Pipes** |  | 2026-07-19 | 2026-09-01 |  |  |  |
| PRO-R25-IR-DL-140 |  | Material Delivery & Site Inspection of Softscape and Planting Works | 18d | 2026-07-19 | 2026-08-09 | PRO-IR-1DL-140 | 42d | 16d |
| PRO-R25-IR-DL-150 |  | Material Delivery & Site Inspection of Site Furnishings (Seating Bench,Stone Boulders and Gravel) | 18d | 2026-08-11 | 2026-09-01 | PRO-IR-1DL-150 | 42d | 2d |
|  | SW | **Sewage Network** |  | 2026-01-24 | 2026-09-29 |  |  |  |
|  | PO | **Issuance of Purchase Orders** |  | 2026-01-24 | 2026-01-29 |  |  |  |
|  | 1 | **Main Line Sections** |  | 2026-01-24 | 2026-01-29 |  |  |  |
| PRO-SW-PO-100 |  | Issuance of Purchase Order for Main Line Pipes of Sewage Network | 6d | 2026-01-24 | 2026-01-29 | ENG-MT-SW-ML-A-110 | 29d | 0d |
| PRO-SW-PO-110 |  | Issuance of Purchase Order for Manhole of Sewage Network | 6d | 2026-01-24 | 2026-01-29 | ENG-MT-SW-ML-A-100 | 42d | 0d |
|  | 3 | **Testing and Finishes** |  | 2026-01-24 | 2026-01-29 |  |  |  |
| PRO-SW-PO-120 |  | Issuance of Purchase Order for Manhole Covers of Sewage Network | 6d | 2026-01-24 | 2026-01-29 | ENG-MT-SW-TF-A-100 | 41d | 0d |
|  | MF | **Manufacturing of Material** |  | 2026-01-31 | 2026-08-22 |  |  |  |
|  | 1 | **Main Line Sections** |  | 2026-01-31 | 2026-04-16 |  |  |  |
| PRO-SW-MF-100 |  | Manufacturing of Main Line Pipes for Sewage Network | 43d | 2026-01-31 | 2026-04-02 | PRO-SW-PO-100 | 29d | 0d |
| PRO-SW-MF-110 |  | Manufacturing of Manholes for Sewage Network | 55d | 2026-01-31 | 2026-04-16 | PRO-SW-PO-110 | 42d | 0d |
|  | 3 | **Testing and Finishes** |  | 2026-01-31 | 2026-08-22 |  |  |  |
| PRO-SW-MF-120 |  | Manufacturing of Manhole Covers for Sewage Network | 160d | 2026-01-31 | 2026-08-22 | PRO-SW-PO-120 | 41d | 0d |
|  | 1DL | **1st Material Delivery & Site Inspection** |  | 2026-04-02 | 2026-08-29 |  |  |  |
|  | 1 | **Main Line Sections** |  | 2026-04-02 | 2026-04-23 |  |  |  |
| PRO-SW-1DL-100 |  | 1ST Material Delivery for Main Line Pipes of Sewage Network | 6d | 2026-04-02 | 2026-04-09 | PRO-SW-MF-100 | 29d | 0d |
| PRO-SW-1DL-110 |  | 1ST Material Delivery for Manholes of Sewage Network | 6d | 2026-04-16 | 2026-04-23 | PRO-SW-MF-110 | 42d | 0d |

| ID | WBS | Activity | Duration | Start | Finish | Predecessors | Total float | Free float | Resources | Cost | 01- Network |
| --- | --- | --- | --- | --- | --- | --- | --- | --- | --- | --- | --- |
|  | 3 | **Testing and Finishes** |  | 2026-08-22 | 2026-08-29 |  |  |  |  |  |  |
| PRO-SW-1DL-120 |  | 1ST Material Delivery for Manholes Covers of Sewage Network | 6d | 2026-08-22 | 2026-08-29 | PRO-SW-MF-120 | 41d | 0d |  |  |  |
|  | DL | **Material Delivery & Site Inspection** |  | 2026-04-09 | 2026-09-29 |  |  |  |  |  |  |
|  | 1 | **Main Line Sections** |  | 2026-04-09 | 2026-05-14 |  |  |  |  |  |  |
| PRO-R25-SW-DL-100 |  | Material Delivery & Site Inspection of Main Line Pipes for Sewage Network | 18d | 2026-04-09 | 2026-04-30 | PRO-SW-1DL-100, PRO-SW-MF-100 SS, PRO-SW-MF-100 FF | 30d | 22d | Depth Between 0m to 1.50m [40]; Depth Between 1.50m to 2.50m [246]; Depth > 2.50m [10]; Depth Between 0m to 1.50m [22]; Depth Between 1.50m to 2.50m [1600]; Depth Between 2.50m to 3.50m [75]; Depth > 3.50m [15]; HDPE Force Main (PE 100, SDR 11, PN 16 bar) DN 160 mm diameter, in trenches depth: 0- 1.5m [25]; HDPE Force Main (PE 100, SDR 11, PN 16 bar) DN 160 mm diameter, in trenches depth: 1.51- 2.5m [40] | 124,215.2 | SW |
| PRO-R25-SW-DL-110 |  | Material Delivery & Site Inspection of Manholes for Sewage Network | 18d | 2026-04-23 | 2026-05-14 | PRO-SW-1DL-110, PRO-SW-MF-110 SS, PRO-SW-MF-110 FF | 42d |  | Depth: 0 - 1.5m [2]; Depth: 1.51 - 2.5m [35]; Depth: 2.51 - 3.5m [2]; Depth > 3.50m [1] | 23,195.2 | SW |
|  | 3 | **Testing and Finishes** |  | 2026-08-29 | 2026-09-29 |  |  |  |  |  |  |
| PRO-R25-SW-DL-120 |  | Material Delivery & Site Inspection of Manholes Covers for Sewage Network | 26d | 2026-08-29 | 2026-09-29 | PRO-SW-1DL-120, PRO-SW-MF-120 SS, PRO-SW-MF-120 FF | 41d | 1d |  |  |  |
|  | SD | **Storm Drainage Network** |  | 2026-01-24 | 2026-10-05 |  |  |  |  |  |  |
|  | MF | **Manufacturing of Material** |  | 2026-01-31 | 2026-08-27 |  |  |  |  |  |  |
|  | 1 | **Main Line Sections** |  | 2026-01-31 | 2026-04-05 |  |  |  |  |  |  |
| PRO-SD-MF-100 |  | Manufacturing of Materials for Manholes of Storm Drainage Network | 45d | 2026-01-31 | 2026-04-05 | PRO-SD-PO-100 | 38d | 0d |  |  |  |
| PRO-SD-MF-110 |  | Manufacturing of Materials for Main Line Pipes of Storm Drainage Network | 45d | 2026-01-31 | 2026-04-05 | PRO-SD-PO-110 | 0d |  |  |  |  |
|  | 2 | **Catch Basin Sections** |  | 2026-01-31 | 2026-03-07 |  |  |  |  |  |  |
| PRO-SD-MF-130 |  | Manufacturing of Materials for Catch Basins of Storm Drainage Network | 26d | 2026-01-31 | 2026-03-07 | PRO-SD-PO-130 | 35d | 0d |  |  |  |
| PRO-SD-MF-150 |  | Manufacturing of Materials for Catch Basin Pipes of Storm Drainage Network | 26d | 2026-01-31 | 2026-03-07 | PRO-SD-PO-150 | 35d | 0d |  |  |  |
|  | 3 | **Testing and Finishes** |  | 2026-01-31 | 2026-08-27 |  |  |  |  |  |  |
| PRO-SD-MF-120 |  | Manufacturing of Materials for Manhole Covers of Storm Drainage Network | 165d | 2026-01-31 | 2026-08-27 | PRO-SD-PO-120 | 40d | 0d |  |  |  |
| PRO-SD-MF-140 |  | Manufacturing of Materials for Catch Basin Covers of Storm Drainage Network | 150d | 2026-01-31 | 2026-08-10 | PRO-SD-PO-140 | 43d | 0d |  |  |  |
|  | PO | **Issuance of Purchase Orders** |  | 2026-01-24 | 2026-01-29 |  |  |  |  |  |  |
|  | 1 | **Main Line Sections** |  | 2026-01-24 | 2026-01-29 |  |  |  |  |  |  |
| PRO-SD-PO-100 |  | Issuance of Purchase Order for Manholes of Storm Drainage Network | 6d | 2026-01-24 | 2026-01-29 | ENG-MT-SD-ML-A-100 | 38d | 0d |  |  |  |
| PRO-SD-PO-110 |  | Issuance of Purchase Order for Main Line Pipes of Storm Drainage Network | 6d | 2026-01-24 | 2026-01-29 | ENG-MT-SD-ML-A-110 | 0d |  |  |  |  |
|  | 2 | **Catch Basin Sections** |  | 2026-01-24 | 2026-01-29 |  |  |  |  |  |  |
| PRO-SD-PO-130 |  | Issuance of Purchase Order for Catch Basins of Storm Drainage Network | 6d | 2026-01-24 | 2026-01-29 | ENG-MT-SD-CB-A-100 | 35d | 0d |  |  |  |
| PRO-SD-PO-150 |  | Issuance of Purchase Order for Catch Basin Pipes of Storm Drainage Network | 6d | 2026-01-24 | 2026-01-29 | ENG-MT-SD-CB-A-110 | 35d | 0d |  |  |  |

| ID | WBS | Activity | Duration | Start | Finish | Predecessors | Total float | Free float | Resources | Cost | 01- Network |
| --- | --- | --- | --- | --- | --- | --- | --- | --- | --- | --- | --- |
|  | 3 | **Testing and Finishes** |  | 2026-01-24 | 2026-01-29 |  |  |  |  |  |  |
| PRO-SD-PO-120 |  | Issuance of Purchase Order for Manhole Covers of Storm Drainage Network | 6d | 2026-01-24 | 2026-01-29 | ENG-MT-SD-TF-A-100 | 40d | 0d |  |  |  |
| PRO-SD-PO-140 |  | Issuance of Purchase Order for Catch Basin Covers of Storm Drainage Network | 6d | 2026-01-24 | 2026-01-29 | ENG-MT-SD-TF-A-110 | 43d | 0d |  |  |  |
|  | 1DL | **1st Material Delivery & Site Inspection** |  | 2026-03-07 | 2026-09-03 |  |  |  |  |  |  |
|  | 1 | **Main Line Sections** |  | 2026-04-05 | 2026-04-11 |  |  |  |  |  |  |
| PRO-SD-1DL-100 |  | 1ST Material Delivery for Manholes of Storm Drainage Network | 5d | 2026-04-05 | 2026-04-11 | PRO-SD-MF-100 | 38d | 0d |  |  |  |
| PRO-SD-1DL-110 |  | 1ST Material Delivery for Main Line Pipes of Storm Drainage Network | 5d | 2026-04-05 | 2026-04-11 | PRO-SD-MF-110 | 0d |  |  |  |  |
|  | 2 | **Catch Basin Sections** |  | 2026-03-07 | 2026-03-16 |  |  |  |  |  |  |
| PRO-SD-1DL-120 |  | 1ST Material Delivery for Catch Basin Pipes of Storm Drainage Network | 6d | 2026-03-07 | 2026-03-16 | PRO-SD-MF-150 | 35d | 0d |  |  |  |
| PRO-SD-1DL-130 |  | 1ST Material Delivery for Catch Basins of Storm Drainage Network | 6d | 2026-03-07 | 2026-03-16 | PRO-SD-MF-130 | 35d | 0d |  |  |  |
|  | 3 | **Testing and Finishes** |  | 2026-08-10 | 2026-09-03 |  |  |  |  |  |  |
| PRO-SD-1DL-150 |  | 1ST Material Delivery for Catch Basin Covers of Storm Drainage Network | 6d | 2026-08-10 | 2026-08-17 | PRO-SD-MF-140 | 43d | 0d |  |  |  |
| PRO-SD-1DL-140 |  | 1ST Material Delivery for Manholes Covers of Storm Drainage Network | 6d | 2026-08-27 | 2026-09-03 | PRO-SD-MF-120 | 40d | 0d |  |  |  |
|  | DL | **Material Delivery & Site Inspection** |  | 2026-03-16 | 2026-10-05 |  |  |  |  |  |  |
|  | 1 | **Main Line Sections** |  | 2026-04-11 | 2026-04-19 |  |  |  |  |  |  |
| PRO-R25-SD-DL-100 |  | Material Delivery & Site Inspection of Manholes of Storm Drainage Network | 7d | 2026-04-11 | 2026-04-19 | PRO-SD-1DL-100, PRO-SD-MF-100 | 38d | 21d | MH depth 1.5 - 2.5m [20]; MH depth 2.5 - 3.5m [17]; MH depth > 3.50m [1]; MH depth 2.5 -3.5m [2] | 118,826.4 | SD |
| PRO-R25-SD-DL-120 |  | Material Delivery & Site Inspection of Main Line Pipes of Storm Drainage Network | 7d | 2026-04-11 | 2026-04-19 | PRO-SD-1DL-110, PRO-SD-MF-110 | 0d |  | Depth Between 1.50m to 2.50m [548]; Depth Between 2.50m to 3.50m [439]; Depth > 3.50m [15]; Depth Between 2.50m to 3.50m [191]; Depth Between 0m to 1.50m [28]; Depth Between 1.50m to 2.50m [10]; Depth Between 2.50m to 3.50m [94]; Depth > 3.50m [7]; Depth Between 2.50m to 3.50m [121]; Depth Between 3.50m to 4.50m [371]; Depth > 4.50m [15]; Depth Between 3.50m to 4.50m [737]; Depth > 4.50m [25] | 433,418.2 | SD |
|  | 2 | **Catch Basin Sections** |  | 2026-03-16 | 2026-05-13 |  |  |  |  |  |  |
| PRO-R25-SD-DL-110 |  | Material Delivery & Site Inspection of Catch Basin Pipes for Storm Drainage Network | 46d | 2026-03-16 | 2026-05-13 | PRO-SD-1DL-120, PRO-SD-MF-150 SS, PRO-SD-MF-150 FF | 35d | 18d | Depth Between 0m to 1.50m [95]; Depth Between 1.50m to 2.50m [2819]; Depth > 2.50m [15] | 288,995 | SD |
| PRO-R25-SD-DL-130 |  | Material Delivery & Site Inspection of Catch Basins for Storm Drainage Network | 46d | 2026-03-16 | 2026-05-13 | PRO-SD-1DL-130, PRO-SD-MF-130 SS, PRO-SD-MF-130 FF | 35d | 18d | Single Catch Basin 1000mm x 1000mm [197]; Double Catch Basin 1200mm x 2300mm [4] | 315,480 | SD |
|  | 3 | **Testing and Finishes** |  | 2026-08-17 | 2026-10-05 |  |  |  |  |  |  |
| PRO-R25-SD-DL-150 |  | Material Delivery & Site Inspection of Catch Basin Covers for Storm Drainage Network | 26d | 2026-08-17 | 2026-09-16 | PRO-SD-1DL-150, PRO-SD-MF-140 | 43d | 18d |  |  |  |
| PRO-R25-SD-DL-140 |  | Material Delivery & Site Inspection of Manholes Covers for Storm Drainage Network | 26d | 2026-09-03 | 2026-10-05 | PRO-SD-1DL-140, PRO-SD-MF-120, PRO-R25-IR-DL-150 | 40d | 15d |  |  |  |
|  | PW | **Potable Water Network** |  | 2026-01-24 | 2026-11-19 |  |  |  |  |  |  |
|  | PO | **Issuance of Purchase Orders** |  | 2026-01-24 | 2026-02-03 |  |  |  |  |  |  |
|  | 1 | **Main Line Sections** |  | 2026-01-24 | 2026-01-29 |  |  |  |  |  |  |
| PRO-PW-PO-100 |  | Issuance of Purchase Order for Main Line Pipes of Potable Water Network | 6d | 2026-01-24 | 2026-01-29 | ENG-MT-PW-ML-A-100 | 41d | 0d |  |  |  |
| PRO-PW-PO-110 |  | Issuance of Purchase Order for Valves of Potable Water Network | 6d | 2026-01-24 | 2026-01-29 | ENG-MT-PW-ML-A-110 | 43d | 6d |  |  |  |

| ID | WBS | Activity | Duration | Start | Finish | Predecessors | Total float | Free float | Resources | Cost | 01- Network |
| --- | --- | --- | --- | --- | --- | --- | --- | --- | --- | --- | --- |
|  | 3 | **Fire Hydrant** |  | 2026-01-24 | 2026-02-03 |  |  |  |  |  |  |
| PRO-PW-PO-120 |  | Issuance of Purchase Order for Fire Hydrants of Potable Water Network | 10d | 2026-01-24 | 2026-02-03 | ENG-MT-PW-FH-A-100 | 37d | 0d |  |  |  |
|  | 4 | **Testing and Finishes** |  | 2026-01-24 | 2026-02-03 |  |  |  |  |  |  |
| PRO-PW-PO-130 |  | Issuance of Purchase Order for Surface Box of Potable Water Network | 10d | 2026-01-24 | 2026-02-03 | ENG-MT-PW-TF-A-100 | 22d | 0d |  |  |  |
|  | MF | **Manufacturing of Material** |  | 2026-01-31 | 2026-10-13 |  |  |  |  |  |  |
|  | 1 | **Main Line Sections** |  | 2026-01-31 | 2026-08-05 |  |  |  |  |  |  |
| PRO-PW-MF-100 |  | Manufacturing of Main Line Pipes for Potable Water Network | 100d | 2026-01-31 | 2026-06-13 | PRO-PW-PO-100 | 41d | 0d |  |  |  |
| PRO-PW-MF-110 |  | Manufacturing of Valves for Potable Water Network | 140d | 2026-02-07 | 2026-08-05 | PRO-PW-PO-110, PRO-R25-PW-DL-120 FF | 37d | 0d |  |  |  |
|  | 3 | **Fire Hydrant** |  | 2026-02-04 | 2026-06-29 |  |  |  |  |  |  |
| PRO-PW-MF-120 |  | Manufacturing of Fire Hydrants for Potable Water Network | 110d | 2026-02-04 | 2026-06-29 | PRO-PW-PO-120 | 37d | 0d |  |  |  |
|  | 4 | **Testing and Finishes** |  | 2026-02-04 | 2026-10-13 |  |  |  |  |  |  |
| PRO-PW-MF-130 |  | Manufacturing for Surface Box of Potable Water Network | 200d | 2026-02-04 | 2026-10-13 | PRO-PW-PO-130 | 22d | 0d |  |  |  |
|  | 1DL | **1st Material Delivery & Site Inspection** |  | 2026-06-13 | 2026-10-20 |  |  |  |  |  |  |
|  | 1 | **Main Line Sections** |  | 2026-06-13 | 2026-08-12 |  |  |  |  |  |  |
| PRO-PW-1DL-100 |  | 1ST Material Delivery for Main Line Pipes of Potable Water Network | 6d | 2026-06-13 | 2026-06-20 | PRO-PW-MF-100 | 41d | 0d |  |  |  |
| PRO-PW-1DL-110 |  | 1ST Material Delivery for Valves of Potable Water Network | 6d | 2026-08-05 | 2026-08-12 | PRO-PW-MF-110 | 37d | 0d |  |  |  |
|  | 3 | **Fire Hydrant** |  | 2026-06-29 | 2026-07-06 |  |  |  |  |  |  |
| PRO-PW-1DL-120 |  | 1ST Material Delivery for Fire Hydrants of Potable Water Network | 6d | 2026-06-29 | 2026-07-06 | PRO-PW-MF-120 | 37d | 0d |  |  |  |
|  | 4 | **Testing and Finishes** |  | 2026-10-13 | 2026-10-20 |  |  |  |  |  |  |
| PRO-PW-1DL-130 |  | 1ST Material Delivery for Finishes of Potable Water Network | 6d | 2026-10-13 | 2026-10-20 | PRO-PW-MF-130 | 22d | 0d |  |  |  |
|  | DL | **Material Delivery & Site Inspection** |  | 2026-06-20 | 2026-11-19 |  |  |  |  |  |  |
|  | 1 | **Main Line Sections** |  | 2026-06-20 | 2026-09-02 |  |  |  |  |  |  |
| PRO-R25-PW-DL-100 |  | Material Delivery & Site Inspection of Main Line Pipes for Potable Water Network | 18d | 2026-06-20 | 2026-07-11 | PRO-PW-1DL-100 | 41d |  | Depth Between 0m to 1.50m [6]; Depth Between 1.50m to 2.50m [6]; Depth > 2.50m [2]; Depth Between 0m to 1.50m [420]; Depth Between 1.50m to 2.50m [280]; Depth > 2.50m [10]; Depth Between 0m to 1.50m [50]; Depth Between 1.50m to 2.50m [10]; Depth > 2.50m [5]; Depth Between 0m to 1.50m [320]; Depth Between 1.50m to 2.50m [1310]; Depth > 2.50m [20] | 116,055.2 | PW |
| PRO-R25-PW-DL-110 |  | Material Delivery & Site Inspection of Valves for Potable Water Network | 18d | 2026-08-12 | 2026-09-02 | PRO-PW-1DL-110 | 37d |  | Gate valves Dia 50 mm [1]; Gate valves Dia 100 mm [12]; Gate valves Dia 150 mm [17]; Gate valves Dia 250 mm [9]; Air valves with Dia 50 mm [1]; Washout valve Dia 100 mm [2]; Wash out chamber (2500x 2500mm) [2]; Air valve chamber (1000x 1000 mm) [1]; Flow meter chamber (1500x 2500 mm) [1]; Flow meter dia 100 mm [1] | 53,088 | PW |

| ID | WBS | Activity | Duration | Start | Finish | Predecessors | Total float | Free float | Resources | Cost | 01- Network |
| --- | --- | --- | --- | --- | --- | --- | --- | --- | --- | --- | --- |
|  | 3 | **Fire Hydrant** |  | 2026-07-06 | 2026-08-05 |  |  |  |  |  |  |
| PRO-R25-PW-DL-120 |  | Material Delivery & Site Inspection of Fire Hydrants for Potable Water Network | 26d | 2026-07-06 | 2026-08-05 | PRO-PW-1DL-120 | 37d | 0d | 3-outlet fire hydrant (2 x 2.5 inch and 1 x 4.5 inch) in the form of a separate dry vacuum cylinder, complete according to drawings. [17] | 38,760 | PW |
|  | 4 | **Testing and Finishes** |  | 2026-10-20 | 2026-11-19 |  |  |  |  |  |  |
| PRO-R25-PW-DL-130 |  | Material Delivery & Site Inspection for Finishes of Potable Water Network | 26d | 2026-10-20 | 2026-11-19 | PRO-PW-1DL-130 | 22d |  |  |  |  |
|  | IR | **Irrigation Network** |  | 2026-01-24 | 2026-08-26 |  |  |  |  |  |  |
|  | PO | **Issuance of Purchase Orders** |  | 2026-01-24 | 2026-01-29 |  |  |  |  |  |  |
|  | 1 | **Main Line Pipes** |  | 2026-01-24 | 2026-01-29 |  |  |  |  |  |  |
| PRO-IR-PO-100 |  | Issuance of Purchase Order for Main Line Pipes of Irrigation Network | 6d | 2026-01-24 | 2026-01-29 | ENG-MT-IR-ML-A-100 | 36d | 0d |  |  |  |
| PRO-IR-PO-110 |  | Issuance of Purchase Order for Valves of Irrigation Network | 6d | 2026-01-24 | 2026-01-29 | ENG-MT-IR-ML-A-110 | 43d | 0d |  |  |  |
|  | MF | **Manufacturing of Material** |  | 2026-01-31 | 2026-07-29 |  |  |  |  |  |  |
|  | 1 | **Main Line Pipes** |  | 2026-01-31 | 2026-07-29 |  |  |  |  |  |  |
| PRO-IR-MF-100 |  | Manufacturing of Main Line Pipes for Irrigation Network | 105d | 2026-01-31 | 2026-06-18 | PRO-IR-PO-100 | 36d | 0d |  |  |  |
| PRO-IR-MF-110 |  | Manufacturing of Valves for Irrigation Network | 140d | 2026-01-31 | 2026-07-29 | PRO-IR-PO-110 | 43d | 0d |  |  |  |
|  | 1DL | **1st Material Delivery & Site Inspection** |  | 2026-06-18 | 2026-08-05 |  |  |  |  |  |  |
|  | 1 | **Main Line Pipes** |  | 2026-06-18 | 2026-08-05 |  |  |  |  |  |  |
| PRO-IR-1DL-100 |  | 1ST Material Delivery for Main Line Pipes of Irrigation Network | 6d | 2026-06-18 | 2026-06-25 | PRO-IR-MF-100 | 36d | 0d |  |  |  |
| PRO-IR-1DL-110 |  | 1ST Material Delivery for Valves of Irrigation Network | 6d | 2026-07-29 | 2026-08-05 | PRO-IR-MF-110 | 43d | 0d |  |  |  |
|  | DL | **Material Delivery & Site Inspection** |  | 2026-06-25 | 2026-08-26 |  |  |  |  |  |  |
|  | 1 | **Main Line Pipes** |  | 2026-06-25 | 2026-08-26 |  |  |  |  |  |  |
| PRO-R25-IR-DL-100 |  | Material Delivery & Site Inspection of Main Line Pipes for Irrigation Network | 18d | 2026-06-25 | 2026-07-16 | PRO-IR-1DL-100, PRO-IR-MF-100 SS, PRO-IR-MF-100 FF | 36d |  | pipe line O.D 32 mm PN 10, in depth 0 to 1.5 m [3350]; pipe line O.D 40 mm PN 10, in depth 0 to 1.5 m [1850]; pipe line O.D 50 mm PN 10, in depth 0 to 1.5 m [250] | 38,640 | IR |
| PRO-R25-IR-DL-110 |  | Material Delivery & Site Inspection of Valves for Irrigation Network | 18d | 2026-08-05 | 2026-08-26 | PRO-IR-1DL-110, PRO-IR-MF-110 | 43d |  | Gate valve 50 mm PN16 [7]; Direct Burried Gate valve 40 mm PN16 [12]; Pressure–compensating bubblers 110 Lit/Hr [850]; Flushing Bronze gate valve dia 1.5" inside PVC box [19]; Air release valve 1.5" inside PVC box [19]; Extra flexible pressure compensating on surface inline dripline`s, O.D. is 16.1 mm [12000]; Electrical Solenoid Valve ( 1.5") inside PVC box [12]; Electrical Solenoid Valve ( 2") inside PVC box [7]; Quick coupling valve 1" inside a round valve box 10" size with a manual gate valve, hose swivel and key with all accessories [53]; Advanced Irrigation controller subject to client approval, can connect with Centarl Control system [1]; Decoder cables 12 AWG between valves and controllers, The cables shall be pulled through 32Ø UPVC conduit [3500]; Preparing the irrigation program for the entire system and providing technical services for monitoring and controlling the central irrigation systems [1] | 117,418 | IR |
|  | TSE | **Treated Sewage Effluent (Tse)** |  | 2026-01-24 | 2026-09-07 |  |  |  |  |  |  |
|  | PO | **Issuance of Purchase Orders** |  | 2026-01-24 | 2026-01-29 |  |  |  |  |  |  |
|  | 1 | **Main Line Pipes** |  | 2026-01-24 | 2026-01-29 |  |  |  |  |  |  |
| PRO-TSE-PO-120 |  | Issuance of Purchase Order for Main Line Pipes of Treated Sewage Effluent (Tse) | 6d | 2026-01-24 | 2026-01-29 | ENG-MT-IR-ML-A-120 | 40d | 0d |  |  |  |
| PRO-TSE-PO-130 |  | Issuance of Purchase Order for Valves of Treated Sewage Effluent (Tse) | 6d | 2026-01-24 | 2026-01-29 | ENG-MT-IR-ML-A-130 | 36d | 0d |  |  |  |

| ID | WBS | Activity | Duration | Start | Finish | Predecessors | Total float | Free float | Resources | Cost | 01- Network |
| --- | --- | --- | --- | --- | --- | --- | --- | --- | --- | --- | --- |
|  | MF | **Manufacturing of Material** |  | 2026-01-31 | 2026-08-10 |  |  |  |  |  |  |
|  | 1 | **Main Line Pipes** |  | 2026-01-31 | 2026-08-10 |  |  |  |  |  |  |
| PRO-TSE-MF-120 |  | Manufacturing of Main Line Pipes for Treated Sewage Effluent (Tse) | 110d | 2026-01-31 | 2026-06-24 | PRO-TSE-PO-120 | 40d | 0d |  |  |  |
| PRO-TSE-MF-130 |  | Manufacturing of Valves for Treated Sewage Effluent (Tse) | 150d | 2026-01-31 | 2026-08-10 | PRO-TSE-PO-130 | 36d | 0d |  |  |  |
|  | 1DL | **1st Material Delivery & Site Inspection** |  | 2026-06-24 | 2026-08-17 |  |  |  |  |  |  |
|  | 1 | **Main Line Pipes** |  | 2026-06-24 | 2026-08-17 |  |  |  |  |  |  |
| PRO-TSE-1DL-120 |  | 1ST Material Delivery for Main Line Pipes of Treated Sewage Effluent (Tse) | 6d | 2026-06-24 | 2026-07-01 | PRO-TSE-MF-120 | 40d | 0d |  |  |  |
| PRO-TSE-1DL-130 |  | 1ST Material Delivery for Valves of Treated Sewage Effluent (Tse) | 6d | 2026-08-10 | 2026-08-17 | PRO-TSE-MF-130 | 36d | 0d |  |  |  |
|  | DL | **Material Delivery & Site Inspection** |  | 2026-07-01 | 2026-09-07 |  |  |  |  |  |  |
|  | 1 | **Main Line Pipes** |  | 2026-07-01 | 2026-09-07 |  |  |  |  |  |  |
| PRO-R25-TSE-DL-120 |  | Material Delivery & Site Inspection of Main Line Pipes for Treated Sewage Effluent (Tse) | 18d | 2026-07-01 | 2026-07-22 | PRO-TSE-MF-120 SS+15d, PRO-TSE-MF-120 FF, PRO-TSE-1DL-120 | 40d | 31d | Depth Between 0m to 1.50m [10]; Depth Between 1.50m to 2.50m [5]; Depth > 2.50m [2]; Depth Between 0m to 1.50m [920]; Depth Between 0m to 1.50m [412.98]; Depth Between 1.50m to 2.50m [45]; Depth > 2.50m [10]; Depth Between 0m to 1.50m [850]; Depth Between 1.50m to 2.50m [260]; Depth > 2.50m [25]; Depth Between 0m to 1.50m [60]; Depth Between 1.50m to 2.50m [40]; Depth > 2.50m [8] | 69,207.2 | TSE |
| PRO-R25-TSE-DL-130 |  | Material Delivery & Site Inspection of Valves for Treated Sewage Effluent (Tse) | 18d | 2026-08-17 | 2026-09-07 | PRO-TSE-MF-130, PRO-TSE-1DL-130 | 36d | 33d | Gate valves dia 50 mm [1]; Gate valves dia 100 mm [14]; Gate valves dia 150 mm [5]; Gate valves dia 200 mm [2]; Air valves with dia 50 mm [1]; Washout valve dia 100 mm [2]; Wash out chamber (2500x 2500mm) [2]; Air valve chamber (1000x 1000 mm) [1]; Flow meter chamber (1500x 3000 mm) [1]; Flow meter dia 150 mm [1] | 42,984 | TSE |
|  | MV | **Medium Voltage Network** |  | 2026-01-24 | 2026-10-24 |  |  |  |  |  |  |
|  | PO | **Issuance of Purchase Orders** |  | 2026-01-24 | 2026-02-05 |  |  |  |  |  |  |
|  | 1 | **Cabling Works** |  | 2026-01-24 | 2026-02-05 |  |  |  |  |  |  |
| PRO-MV-PO-100 |  | Issuance of Purchase Order for Medium Voltage Cables of Medium Voltage Network | 12d | 2026-01-24 | 2026-02-05 | ENG-MT-MV-ML-A-100 | 43d | 0d |  |  |  |
|  | 3 | **Termination and Testing Works** |  | 2026-01-24 | 2026-02-05 |  |  |  |  |  |  |
| PRO-MV-PO-120 |  | Issuance of Purchase Order for Termination and Joints Kits of Medium Voltage Network | 12d | 2026-01-24 | 2026-02-05 | ENG-MT-MV-TF-A-100 | 37d | 0d |  |  |  |
|  | MF | **Manufacturing of Material** |  | 2026-02-07 | 2026-08-23 |  |  |  |  |  |  |
|  | 1 | **Cabling Works** |  | 2026-02-07 | 2026-06-20 |  |  |  |  |  |  |
| PRO-MV-MF-100 |  | Manufacturing of Medium Voltage Cables for Medium Voltage Network | 100d | 2026-02-07 | 2026-06-20 | PRO-MV-PO-100 | 43d | 0d |  |  |  |
|  | 3 | **Termination and Testing Works** |  | 2026-02-07 | 2026-08-23 |  |  |  |  |  |  |
| PRO-MV-MF-110 |  | Manufacturing of Termination and Joints Kits for Medium Voltage Network | 155d | 2026-02-07 | 2026-08-23 | PRO-MV-PO-120 | 37d | 0d |  |  |  |
|  | 1DL | **1st Material Delivery & Site Inspection** |  | 2026-06-20 | 2026-09-22 |  |  |  |  |  |  |
|  | 1 | **Cabling Works** |  | 2026-06-20 | 2026-07-04 |  |  |  |  |  |  |
| PRO-MV-1DL-100 |  | 1ST Material Delivery for Medium Voltage Cables of Medium Voltage Network | 12d | 2026-06-20 | 2026-07-04 | PRO-MV-MF-100 | 43d | 0d |  |  |  |

| ID | WBS | Activity | Duration | Start | Finish | Predecessors | Total float | Free float | Resources | Cost | 01- Network |
| --- | --- | --- | --- | --- | --- | --- | --- | --- | --- | --- | --- |
|  | 3 | **Termination and Testing Works** |  | 2026-08-23 | 2026-09-22 |  |  |  |  |  |  |
| PRO-MV-1DL-120 |  | 1ST Material Delivery for Termination and Joints Kits of Medium Voltage Network | 26d | 2026-08-23 | 2026-09-22 | PRO-MV-MF-110 | 37d | 0d |  |  |  |
|  | DL | **Material Delivery & Site Inspection** |  | 2026-07-04 | 2026-10-24 |  |  |  |  |  |  |
|  | 1 | **Cabling Works** |  | 2026-07-04 | 2026-08-03 |  |  |  |  |  |  |
| PRO-MV-DL-100 |  | Material Delivery & Site Inspection of Medium Voltage Cables for Medium Voltage Network | 26d | 2026-07-04 | 2026-08-03 | PRO-MV-1DL-100, PRO-MV-MF-100 SS, PRO-MV-MF-100 FF | 43d | 33d | Excavation for Trench size 40cm wide and 80cm deep (for 1 cable) [200.56]; Excavation for Trench Size 60cm wide and 80cm deep (for 2 cables) [100.1]; Excavation for Trench Size 90cm wide and 80cm deep (for 3 cables) [139.32]; Excavation for Trench Size 180cm wide and 80cm deep (for 6 cables) [61.92]; Excavation for Trench Size 210 cm wide and 80cm deep (for 7 cables) [72.24]; Excavation for Trench Size 240cm wide and 80cm deep (for 8 cables) [441.7]; Duct bank for (33) cables [126]; Duct bank for (21) cables [200]; Duct bank for (15) cables [60.09]; HV Cable Road Crossing [64.15] | 141,293.43 | MV |
|  | 3 | **Termination and Testing Works** |  | 2026-09-22 | 2026-10-24 |  |  |  |  |  |  |
| PRO-MV-DL-110 |  | Material Delivery & Site Inspection of Termination and Joints Kits for Medium Voltage Network | 26d | 2026-09-22 | 2026-10-24 | PRO-MV-1DL-120, PRO-MV-MF-110 SS, PRO-MV-MF-110 FF | 37d | 27d |  |  |  |
|  | SL | **Low Voltage and Street Lighting Network** |  | 2026-01-24 | 2026-11-30 |  |  |  |  |  |  |
|  | PO | **Issuance of Purchase Orders** |  | 2026-01-24 | 2026-02-03 |  |  |  |  |  |  |
|  | 1 | **Cabling Works** |  | 2026-01-24 | 2026-01-29 |  |  |  |  |  |  |
| PRO-SL-PO-100 |  | Issuance of Purchase Order for Lighting Cables of Street Lighting Network | 6d | 2026-01-24 | 2026-01-29 | ENG-MT-SL-ML-A-100 | 41d | 0d |  |  |  |
|  | 2 | **Lighting Poles Works** |  | 2026-01-24 | 2026-01-29 |  |  |  |  |  |  |
| PRO-SL-PO-110 |  | Issuance of Purchase Order for Lighting Poles Foundations of Street Lighting Network | 6d | 2026-01-24 | 2026-01-29 | ENG-MT-SL-S-100, ENG-MT-SL-A-100 | 44d | 0d |  |  |  |
| PRO-SL-PO-120 |  | Issuance of Purchase Order for Lighting Poles of Street Lighting Network | 6d | 2026-01-24 | 2026-01-29 | ENG-MT-SL-S-110, ENG-MT-SL-A-110 | 43d | 0d |  |  |  |
| PRO-SL-PO-140 |  | Issuance of Purchase Order for Lighting Fixtures of Street Lighting Network | 6d | 2026-01-24 | 2026-01-29 | ENG-MT-SL-S-120, ENG-MT-SL-A-120 | 32d | 0d |  |  |  |
|  | 3 | **Distribution Panel Board** |  | 2026-01-24 | 2026-02-03 |  |  |  |  |  |  |
| PRO-SL-PO-160 |  | Issuance of Purchase Order for Distrubution Panel Boards of Street Lighting Network | 10d | 2026-01-24 | 2026-02-03 | ENG-MT-SL-DB-S-100, ENG-MT-SL-DB-A-100 | 41d | 0d |  |  |  |
|  | 4 | **Earthing System Works** |  | 2026-01-24 | 2026-02-03 |  |  |  |  |  |  |
| PRO-SL-PO-150 |  | Issuance of Purchase Order for Lighting Earthing of Street Lighting Network | 10d | 2026-01-24 | 2026-02-03 | ENG-MT-SL-ES-S-100, ENG-MT-SL-ES-A-100 | 38d | 0d |  |  |  |
|  | 5 | **Termination and Testing Works** |  | 2026-01-24 | 2026-02-03 |  |  |  |  |  |  |
| PRO-SL-PO-130 |  | Issuance of Purchase Order for Fuse Boxes of Street Lighting Network | 10d | 2026-01-24 | 2026-02-03 | ENG-MT-SL-TF-S-100, ENG-MT-SL-TF-A-100 | 34d | 0d |  |  |  |
| PRO-SL-PO-170 |  | Issuance of Purchase Order for Cable Lugs of Street Lighting Network | 10d | 2026-01-24 | 2026-02-03 | ENG-MT-SL-TF-S-110, ENG-MT-SL-TF-A-110 | 31d | 0d |  |  |  |
|  | MF | **Manufacturing of Material** |  | 2026-01-31 | 2026-10-13 |  |  |  |  |  |  |
|  | 1 | **Cabling Works** |  | 2026-01-31 | 2026-07-23 |  |  |  |  |  |  |
| PRO-SL-MF-100 |  | Manufacturing of Lighting Cables for Street Lighting Network | 135d | 2026-01-31 | 2026-07-23 | PRO-SL-PO-100 | 41d | 0d |  |  |  |

| ID | WBS | Activity | Duration | Start | Finish | Predecessors | Total float | Free float |
| --- | --- | --- | --- | --- | --- | --- | --- | --- |
|  | 2 | **Lighting Poles Works** |  | 2026-01-31 | 2026-10-08 |  |  |  |
| PRO-SL-MF-110 |  | Manufacturing of Lighting Poles Foundations for Street Lighting Network | 120d | 2026-01-31 | 2026-07-06 | PRO-SL-PO-110 | 44d | 0d |
| PRO-SL-MF-120 |  | Manufacturing of Lighting Poles for Street Lighting Network | 145d | 2026-01-31 | 2026-08-04 | PRO-SL-PO-120 | 43d | 0d |
| PRO-SL-MF-140 |  | Manufacturing of Lighting Fixtures for Street Lighting Network | 200d | 2026-01-31 | 2026-10-08 | PRO-SL-PO-140 | 32d | 0d |
|  | 3 | **Distribution Panel Board** |  | 2026-02-04 | 2026-09-13 |  |  |  |
| PRO-SL-MF-160 |  | Manufacturing of Distrubution Panel Boards for Street Lighting Network | 175d | 2026-02-04 | 2026-09-13 | PRO-SL-PO-160 | 41d | 0d |
|  | 4 | **Earthing System Works** |  | 2026-02-04 | 2026-10-01 |  |  |  |
| PRO-SL-MF-150 |  | Manufacturing of Lighting Earthing for Street Lighting Network | 190d | 2026-02-04 | 2026-10-01 | PRO-SL-PO-150 | 38d | 0d |
|  | 5 | **Termination and Testing Works** |  | 2026-02-04 | 2026-10-13 |  |  |  |
| PRO-SL-MF-130 |  | Manufacturing of Fuse Boxes for Street Lighting Network | 200d | 2026-02-04 | 2026-10-13 | PRO-SL-PO-130 | 34d | 0d |
| PRO-SL-MF-170 |  | Manufacturing of Cable Lugs for Street Lighting Network | 200d | 2026-02-04 | 2026-10-13 | PRO-SL-PO-170 | 31d | 0d |
|  | 1DL | **1st Material Delivery & Site Inspection** |  | 2026-07-06 | 2026-10-31 |  |  |  |
|  | 1 | **Cabling Works** |  | 2026-07-23 | 2026-07-30 |  |  |  |
| PRO-SL-1DL-100 |  | 1ST Material Delivery for Lighting Cables of Street Lighting Network | 6d | 2026-07-23 | 2026-07-30 | PRO-SL-MF-100 | 41d | 0d |
|  | 2 | **Lighting Poles Works** |  | 2026-07-06 | 2026-10-15 |  |  |  |
| PRO-SL-1DL-110 |  | 1ST Material Delivery for Lighting Poles Foundations of Street Lighting Network | 6d | 2026-07-06 | 2026-07-13 | PRO-SL-MF-110 | 44d | 0d |
| PRO-SL-1DL-120 |  | 1ST Material Delivery for Lighting Poles of Street Lighting Network | 6d | 2026-08-04 | 2026-08-11 | PRO-SL-MF-120 | 43d | 0d |
| PRO-SL-1DL-140 |  | 1ST Material Delivery for Lighting Fixtures of Street Lighting Network | 6d | 2026-10-08 | 2026-10-15 | PRO-SL-MF-140 | 32d | 0d |
|  | 3 | **Distribution Panel Board** |  | 2026-09-13 | 2026-09-20 |  |  |  |
| PRO-SL-1DL-160 |  | 1ST Material Delivery for Distrubution Panel Boards of Street Lighting Network | 6d | 2026-09-13 | 2026-09-20 | PRO-SL-MF-160 | 41d | 0d |
|  | 5 | **Termination and Testing Works** |  | 2026-10-13 | 2026-10-31 |  |  |  |
| PRO-SL-1DL-130 |  | 1ST Material Delivery for Fuse Boxes of Street Lighting Network | 15d | 2026-10-13 | 2026-10-31 | PRO-SL-MF-130 | 34d | 0d |
| PRO-SL-1DL-170 |  | 1ST Material Delivery for Cable Lugs of Street Lighting Network | 15d | 2026-10-13 | 2026-10-31 | PRO-SL-MF-170 | 31d | 0d |
|  | 4 | **Earthing System Works** |  | 2026-10-01 | 2026-10-08 |  |  |  |
| PRO-SL-1DL-150 |  | 1ST Material Delivery for Lighting Earthing of Street Lighting Network | 6d | 2026-10-01 | 2026-10-08 | PRO-SL-MF-150 | 38d | 0d |

| ID | WBS | Activity | Duration | Start | Finish | Predecessors | Total float | Free float | Resources | Cost | 01- Network |
| --- | --- | --- | --- | --- | --- | --- | --- | --- | --- | --- | --- |
|  | DL | **Material Delivery & Site Inspection** |  | 2026-07-13 | 2026-11-30 |  |  |  |  |  |  |
|  | 1 | **Cabling Works** |  | 2026-07-30 | 2026-08-30 |  |  |  |  |  |  |
| PRO-R25-SL-DL-100 |  | Material Delivery & Site Inspection of Lighting Cables for Street Lighting Network | 26d | 2026-07-30 | 2026-08-30 | PRO-SL-MF-100 SS, PRO-SL-MF-100 FF, PRO-SL-1DL-100 | 41d | 22d | Road crossing ducts, 2 ways (2 x 150mm HDPE) [228.69]; Road crossing ducts, 2 ways (2 x 110mm UPVC) [90.85]; Road crossing ducts, 3 ways (3 x 110mm UPVC) [30.19]; 4C-300mm2 CU/XLPE / PVC ARMORED CABLE [70]; 4C-240mm2 CU/XLPE / PVC ARMORED CABLE [40]; 4C-185mm2 CU/XLPE / PVC ARMORED CABLE [40]; 4C-50mm2 CU/XLPE / PVC ARMORED CABLE [150]; 4C-16mm2 CU/XLPE / PVC ARMORED CABLE [3485]; 4C-16MM2 CU/XLPE / PVC CABLE [1395]; 1Cx150sq.mm2,Cu, PVC wire [75]; 1Cx120sq.mm2,Cu, PVC wire [75]; 1Cx95sq.mm,Cu, PVC wire [40]; 1Cx70sq.mm2,Cu, PVC wire [20]; 1Cx25sq.mm2,Cu, PVC wire [75]; 1Cx16sq.mm2,Cu, PVC wire [3485]; 1Cx10sq.mm2,Cu, PVC wire [50]; Supply and installation of KWH meter mounting frame including concrete block for installation of KWH meter [6] | 113,173.58 | SL |
|  | 2 | **Lighting Poles Works** |  | 2026-07-13 | 2026-11-15 |  |  |  |  |  |  |
| PRO-R25-SL-DL-110 |  | Material Delivery & Site Inspection of Lighting Poles Foundations for Street Lighting Network | 26d | 2026-07-13 | 2026-08-12 | PRO-SL-MF-110 SS, PRO-SL-MF-110 FF, PRO-SL-1DL-110 | 44d | 25d |  |  |  |
| PRO-R25-SL-DL-120 |  | Material Delivery & Site Inspection of Lighting Poles for Street Lighting Network | 26d | 2026-08-11 | 2026-09-10 | PRO-SL-1DL-120, PRO-SL-MF-120 | 43d | 24d | Lighting poles with 1 arm, height of (12) meters, including the power distribution box, cables, and RCC foundation. [39]; Lighting poles with 2 arms, height of (12) meters, including the power distribution box, cables, and RCC foundation. [36] | 59,910 | SL |
| PRO-R25-SL-DL-140 |  | Material Delivery & Site Inspection of Lighting Fixtures for Street Lighting Network | 26d | 2026-10-15 | 2026-11-15 | PRO-SL-MF-140, PRO-SL-1DL-140 | 32d | 13d | Street Lighting( LED) Luminaire of Output ? 20,965 lumen complete with control gear and lamp, (129.1) WATT. [111] | 13,186.8 | SL |
|  | 3 | **Distribution Panel Board** |  | 2026-09-20 | 2026-10-21 |  |  |  |  |  |  |
| PRO-R25-SL-DL-160 |  | Material Delivery & Site Inspection of Distrubution Panel Boards for Street Lighting Network | 26d | 2026-09-20 | 2026-10-21 | PRO-SL-MF-160, PRO-SL-1DL-160 | 41d | 22d | Street Lighting panels LCP (01) [1] | 4,792.2 | SL |
|  | 4 | **Termination and Testing Works** |  | 2026-10-31 | 2026-11-30 |  |  |  |  |  |  |
| PRO-R25-SL-DL-130 |  | Material Delivery & Site Inspection of Fuse Boxes for Street Lighting Network | 26d | 2026-10-31 | 2026-11-30 | PRO-SL-MF-130, PRO-SL-1DL-130 | 34d | 12d |  |  |  |
| PRO-R25-SL-DL-170 |  | Material Delivery & Site Inspection of Cable Lugs for Street Lighting Network | 26d | 2026-10-31 | 2026-11-30 | PRO-SL-MF-170, PRO-SL-1DL-170 | 31d | 12d |  |  |  |
|  | 5 | **Earthing System Works** |  | 2026-10-08 | 2026-11-08 |  |  |  |  |  |  |
| PRO-R25-SL-DL-150 |  | Material Delivery & Site Inspection of Lighting Earthing for Street Lighting Network | 26d | 2026-10-08 | 2026-11-08 | PRO-SL-MF-150, PRO-SL-1DL-150 | 38d | 19d | Including earthing of lighting poles, masts, feeder pillars, unit substations and LV feeders. [75] | 2,610 | SL |
|  | TE | **Telecom Network** |  | 2026-01-24 | 2026-10-15 |  |  |  |  |  |  |
|  | PO | **Issuance of Purchase Orders** |  | 2026-01-24 | 2026-01-29 |  |  |  |  |  |  |
|  | 1 | **Ducts Works** |  | 2026-01-24 | 2026-01-29 |  |  |  |  |  |  |
| PRO-TE-PO-100 |  | Issuance of Purchase Order for Ducts forTelecom Network | 6d | 2026-01-24 | 2026-01-29 | ENG-MT-TE-A-100 | 39d | 0d |  |  |  |
|  | 3 | **Manholes Works** |  | 2026-01-24 | 2026-01-29 |  |  |  |  |  |  |
| PRO-TE-PO-110 |  | Issuance of Purchase Order for Manholes forTelecom Network | 6d | 2026-01-24 | 2026-01-29 | ENG-MT-TE-A-110 | 44d | 0d |  |  |  |
|  | 2 | **CCTV System Wroks** |  | 2026-01-24 | 2026-01-29 |  |  |  |  |  |  |
| PRO-CTV-PO-100 |  | Issuance of Purchase Order for Civil and Finishes Works of CCTV Complete System | 6d | 2026-01-24 | 2026-01-29 | ENG-MT-CTV-A-100 | 41d | 0d |  |  |  |
|  | MF | **Manufacturing of Material** |  | 2026-01-31 | 2026-08-22 |  |  |  |  |  |  |
|  | 1 | **Ducts Works** |  | 2026-01-31 | 2026-07-18 |  |  |  |  |  |  |
| PRO-TE-MF-100 |  | Manufacturing of Ducts for Telecom Network | 130d | 2026-01-31 | 2026-07-18 | PRO-TE-PO-100 | 39d | 0d |  |  |  |

| ID | WBS | Activity | Duration | Start | Finish | Predecessors | Total float | Free float | Resources | Cost | 01- Network |
| --- | --- | --- | --- | --- | --- | --- | --- | --- | --- | --- | --- |
|  | 3 | **Manholes Works** |  | 2026-01-31 | 2026-08-10 |  |  |  |  |  |  |
| PRO-TE-MF-110 |  | Manufacturing of Manholes for Telecom Network | 150d | 2026-01-31 | 2026-08-10 | PRO-TE-PO-110 | 44d | 0d |  |  |  |
|  | 2 | **CCTV System Wroks** |  | 2026-01-31 | 2026-08-22 |  |  |  |  |  |  |
| PRO-CTV-MF-100 |  | Manufacturing of Civil and Finishes Works for CCTV Complete System | 160d | 2026-01-31 | 2026-08-22 | PRO-CTV-PO-100 | 41d | 0d |  |  |  |
|  | 1DL | **1st Material Delivery & Site Inspection** |  | 2026-07-18 | 2026-09-02 |  |  |  |  |  |  |
|  | 1 | **Ducts Works** |  | 2026-07-18 | 2026-07-25 |  |  |  |  |  |  |
| PRO-TE-1DL-100 |  | 1ST Material Delivery for Ducts of Telecom Network | 6d | 2026-07-18 | 2026-07-25 | PRO-TE-MF-100 | 39d | 0d |  |  |  |
|  | 3 | **Manholes Works** |  | 2026-08-10 | 2026-08-17 |  |  |  |  |  |  |
| PRO-TE-1DL-110 |  | 1ST Material Delivery for Manholes of Telecom Network | 6d | 2026-08-10 | 2026-08-17 | PRO-TE-MF-110 | 44d | 0d |  |  |  |
|  | 2 | **CCTV System Wroks** |  | 2026-08-22 | 2026-09-02 |  |  |  |  |  |  |
| PRO-CTV-1DL-100 |  | 1ST Material Delivery for Civil and Finishes Works of CCTV Complete System | 10d | 2026-08-22 | 2026-09-02 | PRO-CTV-MF-100 | 41d | 0d |  |  |  |
|  | DL | **Material Delivery & Site Inspection** |  | 2026-07-25 | 2026-10-15 |  |  |  |  |  |  |
|  | 1 | **Ducts Works** |  | 2026-07-25 | 2026-09-05 |  |  |  |  |  |  |
| PRO-R25-TE-DL-100 |  | Material Delivery & Site Inspection for Ducts of Telecom Network | 36d | 2026-07-25 | 2026-09-05 | PRO-TE-MF-100 SS+15d, PRO-TE-MF-100 FF, PRO-TE-1DL-100 | 39d | 17d | 2-ways ducts, 50mm diameter [516]; 6-ways ducts, 110mm diameter [2082]; 9-ways ducts, 6 x 160mm & 2 x 100mm [3054]; 6 PVC ducts 150x200 mm (60mm diameter) [162]; 6 PVC ducts 600x800 mm (120mm diameter) [282]; 6 PVC ducts 800x800 mm (170mm diameter) [402] | 255,548.4 | TE |
|  | 3 | **Manholes Works** |  | 2026-08-17 | 2026-09-16 |  |  |  |  |  |  |
| PRO-R25-TE-DL-110 |  | Material Delivery & Site Inspection of Manholes for Telecom Network | 26d | 2026-08-17 | 2026-09-16 | PRO-TE-MF-110 SS+15d, PRO-TE-MF-110 FF, PRO-TE-1DL-110 | 44d | 25d | Manhole Type 2 (1600 x 1600 x 2000) [25]; Manhole Type 3 (1200 x 1200 x 2000) [31] | 53,359.2 | TE |
|  | 2 | **CCTV System Wroks** |  | 2026-09-02 | 2026-10-15 |  |  |  |  |  |  |
| PRO-R25-CTV-DL-100 |  | Material Delivery & Site Inspection of for Civil and Finishes Works of CCTV Complete System | 36d | 2026-09-02 | 2026-10-15 | PRO-CTV-MF-100, PRO-CTV-1DL-100, PRO-CTV-1DL-100 FF | 41d | 22d | 6 PVC ducts 200x150 mm (60mm diameter) [138]; 2-ways ducts, 50mm diameter [498] | 8,967.6 | TE |
|  | 1 | **Superstructure Works** |  | 2026-01-12 | 2026-08-27 |  |  |  |  |  |  |
|  | 1 | **Issuance of Purchase Orders** |  | 2026-01-12 | 2026-02-02 |  |  |  |  |  |  |
|  | SL | **Pump Stations** |  | 2026-01-12 | 2026-01-25 |  |  |  |  |  |  |
| PRO-SPS-CV-PO-10 |  | Issuance of Purchase Order for Civil Works for Pump Stations | 12d | 2026-01-12 | 2026-01-25 | ENG-MT-PS-CV-A-150 | 5.25d | 0d |  |  |  |
|  | SL1 | **Lift Station** |  | 2026-01-12 | 2026-01-25 |  |  |  |  |  |  |
| PRO-LS-CV-PO-20 |  | Issuance of Purchase Order for Civil Works for Lift Stations | 12d | 2026-01-12 | 2026-01-25 | ENG-MT-SLS-CV-A-110 | 3.25d | 0d |  |  |  |

| ID | WBS | Activity | Duration | Start | Finish | Predecessors | Total float | Free float |
| --- | --- | --- | --- | --- | --- | --- | --- | --- |
|  | SL11 | **Storage Tank (TSE)** |  | 2026-01-20 | 2026-02-02 |  |  |  |
| PRO-TSE-CV-PO-30 |  | Issuance of Purchase Order for Civil Works for Storage Tank (TSE) | 12d | 2026-01-20 | 2026-02-02 | ENG-MT-TSE-CV-A-140 | 9.75d | 0d |
|  | TE | **Storm Drainage Ponds** |  | 2026-01-20 | 2026-02-02 |  |  |  |
| PRO-DPO-CV-PO-10 |  | Issuance of Purchase Order for Civil Works for Storm Drainage Ponds | 12d | 2026-01-20 | 2026-02-02 | ENG-MT-DPO-CV-A-110 | 37d | 0d |
|  | SL12 | **Gaurd Room** |  | 2026-01-20 | 2026-02-02 |  |  |  |
| PRO-GR-CV-PO-40 |  | Issuance of Purchase Order for Civil Works for Gaurd Room | 12d | 2026-01-20 | 2026-02-02 | ENG-MT-GR-CV-A-130 | 10.75d | 0d |
|  | SL121 | **Fence** |  | 2026-01-20 | 2026-02-02 |  |  |  |
| PRO-FE-CV-PO-50 |  | Issuance of Purchase Order for Civil Works for Fence | 12d | 2026-01-20 | 2026-02-02 | ENG-MT-FE-CV-A-120 | 38d | 0d |
|  | 2 | **Manufacturing of Material** |  | 2026-01-24 | 2026-08-03 |  |  |  |
|  | SL | **Pump Stations** |  | 2026-01-26 | 2026-04-18 |  |  |  |
| PRO-SPS-CV-MF-10 |  | Manufacturing of Civil Works for Pump Stations | 60d | 2026-01-26 | 2026-04-18 | PRO-SPS-CV-PO-10 | 5.25d | 0d |
|  | SL1 | **Lift Station** |  | 2026-01-26 | 2026-06-08 |  |  |  |
| PRO-LS-CV-MF-30 |  | Manufacturing of Civil Works for Civil Works for Lift Stations | 100d | 2026-01-26 | 2026-06-08 | PRO-LS-CV-PO-20 | 3.25d | 0d |
|  | TE | **Storm Drainage Ponds** |  | 2026-02-03 | 2026-05-07 |  |  |  |
| PRO-DPO-CV-MF-10 |  | Manufacturing of Civil Works for Storm Drainage Ponds | 70d | 2026-02-03 | 2026-05-07 | PRO-DPO-CV-PO-10 | 37d | 0d |
|  | SL11 | **Storage Tank (TSE)** |  | 2026-02-03 | 2026-06-04 |  |  |  |
| PRO-TSE-CV-MF-40 |  | Manufacturing of Civil Works for Civil Works for Storage Tank (TSE) | 90d | 2026-02-03 | 2026-06-04 | PRO-TSE-CV-PO-30 | 9.75d | 0d |
|  | SL12 | **Gaurd Room** |  | 2026-02-03 | 2026-05-25 |  |  |  |
| PRO-GR-CV-MF-50 |  | Manufacturing of Civil Works for Civil Works for Gaurd Room | 85d | 2026-02-03 | 2026-05-25 | PRO-GR-CV-PO-40 | 10.75d | 0d |
|  | SL121 | **Fence** |  | 2026-02-03 | 2026-04-26 |  |  |  |
| PRO-FE-CV-MF-60 |  | Manufacturing of Civil Works for Civil Works for Fence | 60d | 2026-02-03 | 2026-04-26 | PRO-FE-CV-PO-50 | 38d | 0d |
|  | SL1211 | **Softscape and Planting Works** |  | 2026-01-24 | 2026-08-03 |  |  |  |
| PRO-FE-CV-MF-70 |  | Manufacturing of Civil Works for Softscape and Planting Works | 150d | 2026-01-24 | 2026-08-03 | ENG-MT-PL-CV-A-160 | 26d | 0d |
|  | 3 | **1st Material Delivery & Site Inspection** |  | 2026-04-18 | 2026-06-16 |  |  |  |
|  | SL | **Pump Stations** |  | 2026-04-18 | 2026-04-20 |  |  |  |
| PRO-SPS-CV-1DL-10 |  | 1ST Material Delivery for Civil Works for Pump Stations | 2d | 2026-04-18 | 2026-04-20 | PRO-SPS-CV-MF-10 | 5.25d | 0d |

| ID | WBS | Activity | Duration | Start | Finish | Predecessors | Total float | Free float | Resources | Cost | 01- Network | 13 BUILDINGS |
| --- | --- | --- | --- | --- | --- | --- | --- | --- | --- | --- | --- | --- |
|  | SL1 | **Lift Station** |  | 2026-06-08 | 2026-06-09 |  |  |  |  |  |  |  |
| PRO-LS-CV-1DL-40 |  | 1ST Material Delivery for Civil Works for Civil Works for Lift Stations | 1d | 2026-06-08 | 2026-06-09 | PRO-LS-CV-MF-30 | 3.25d | 0d |  |  |  |  |
|  | TE | **Drainage Ponds** |  | 2026-05-07 | 2026-06-16 |  |  |  |  |  |  |  |
| PRO-DPO-CV-1DL-10 |  | 1ST Material Delivery for Civil Works for Drainage Ponds | 30d | 2026-05-07 | 2026-06-16 | PRO-DPO-CV-MF-10 | 37d | 0d |  |  |  |  |
|  | SL11 | **Storage Tank (TSE)** |  | 2026-06-04 | 2026-06-06 |  |  |  |  |  |  |  |
| PRO-TSE-CV-1DL-50 |  | 1ST Material Delivery for Civil Works for Civil Works for Storage Tank (TSE) | 1d | 2026-06-04 | 2026-06-06 | PRO-TSE-CV-MF-40 | 9.75d | 0d |  |  |  |  |
|  | SL12 | **Gaurd Room** |  | 2026-05-25 | 2026-06-13 |  |  |  |  |  |  |  |
| PRO-GR-CV-1DL-60 |  | 1ST Material Delivery for Civil Works for Civil Works for Gaurd Room | 12d | 2026-05-25 | 2026-06-13 | PRO-GR-CV-MF-50 | 10.75d | 0d |  |  |  |  |
|  | SL121 | **Fence** |  |  |  |  |  |  |  |  |  |  |
|  | 4 | **Material Delivery & Site Inspection** |  | 2026-02-21 | 2026-08-27 |  |  |  |  |  |  |  |
|  | SL | **Pump Stations** |  | 2026-04-20 | 2026-05-02 |  |  |  |  |  |  |  |
| PRO-SPS-CV-DL-10 |  | Material Delivery & Site Inspection for Civil Works for Pump Stations | 10d | 2026-04-20 | 2026-05-02 | PRO-SPS-CV-MF-10, PRO-SPS-CV-1DL-10 | 5.25d | 0d | Price [724295 SAR] | 724,294.91 | UB | PUMP |
|  | SL1 | **Lift Station** |  | 2026-06-09 | 2026-07-04 |  |  |  |  |  |  |  |
| PRO-LS-CV-DL-50 |  | Material Delivery & Site Inspection for Civil Works for Lift Stations | 21d | 2026-06-09 | 2026-07-04 | PRO-LS-CV-MF-30, PRO-LS-CV-1DL-40 | 3.25d | 0d | Price [563340 SAR] | 563,340.49 | UB | LIFT |
|  | TE | **Storm Drainage Ponds** |  | 2026-06-16 | 2026-07-27 |  |  |  |  |  |  |  |
| PRO-DPO-CV-DL-10 |  | Material Delivery & Site Inspection for Civil Works for Storm Drainage Ponds | 35d | 2026-06-16 | 2026-07-27 | PRO-DPO-CV-MF-10, PRO-DPO-CV-MF-10 SS, PRO-DPO-CV-1DL-10 | 37d | 27d | Finished grouted riprap for Pond 300mm as per drawings [3720] | 89,280 | UB |  |
|  | SL11 | **Storage Tank (TSE)** |  | 2026-06-04 | 2026-06-06 |  |  |  |  |  |  |  |
| PRO-TSE-CV-DL-60 |  | Material Delivery & Site Inspection for Civil Works for Storage Tank (TSE) | 1d | 2026-06-04 | 2026-06-06 | PRO-TSE-CV-MF-40 | 9.75d | 0d | Glass Fused Bolted (GLS) 1500 m3 Tank with associated accessories & manufacturer recommendation for the foundation [1] | 246,037.6 | PW |  |
|  | SL12 | **Gaurd Room** |  | 2026-06-13 | 2026-07-07 |  |  |  |  |  |  |  |
| PRO-GR-CV-DL-70 |  | Material Delivery & Site Inspection for Civil Works for Gaurd Room | 21d | 2026-06-13 | 2026-07-07 | PRO-GR-CV-MF-50 SS+15d, PRO-GR-CV-MF-50 FF, PRO-GR-CV-1DL-60 | 10.75d | 0d | Slab on Grade [20]; Slabs [31]; Lightweight Concrete Roof insulation as per Architect's specification [155]; Insulated brickwork. with expanded polystyrene 200mm thick; vertical straight wall complete with accessories . [102]; Common brickwork. 150mm thick; vertical straight wall complete with accessories. [180]; 2 perpendicular layers of cold bitumen coats [155]; 2 layer of 4mm HDPE membrane, 2 perpendicular layers cold bitumen coats [155]; 1 layer EPOXY Paint 300 micron [155]; Membrane fully bonded to prime deck and upstand [155]; Geotextile Filter membrane uv resistance [155]; 85mm thick thermal insulation [155]; 1.5mm thick epdm waterproofing membrane [155]; CW01 - 4500 mm width x 3700 mm height [1]; CW02 - 4500 mm width x 3700 mm height [1]; CW03 - 4500 mm width x 3700 mm height [1]; CW04 - 4500 mm width x 3700 mm height [1]; CW05 - 7500 mm width x 4250 mm height [1]; CW06 - 7500 mm width x 4250 mm height [1]; W01 - 1000 mm width x 2000 mm height [1]; W02 - 2000 mm width x 2000 mm height [2]; W03 - 2000 mm width x 1000 mm height [3]; D2 - 900 mm x 2200 mm height temper door [7]; D3 - 950 mm x 2000 mm height temper door [2]; Supply and install 300*300mm terrazzo tiles with 150mm high skirting at perimeter with approv [133]; Supply and install 300*300mm glazed ceramic wall tiles on cement mortar and including rough [95]; Supply and install internal plastering and 2 coats of acrylic paint at walls includin [216]; Supply and install 300*300mm glazed ceramic wall tiles on cement mortar and including rough and smooth p [12]; Supply and install 600*600mm porcelain tiles with approved quality on 30 mm mortar inclu [125]; Supply and install 12.5mm thk, gypsum board suspended ceiling including s [5]; Office Chairs [4]; Office Tables [4]; Guard Stand [2]; Magnetic Control Access barrier, Automatic Vehicular Barriers to be installed on ground with magnetic access [6]; Supply and install Hand Wash Basin with Water Tap, angle valve, P-trap connected to 50mm diameter s [3]; Supply and install paper towel dispenser, surface mounted, satin finish stainless steel as per approv [3]; Supply and install mirror, size 460*910mm as per approved sample including frames, backing and all accessories to complete. [3]; Supply and install towel ring , surface mounted, satin finish stainless steel as per approved sample including accessories. [3]; Kitchen sink with single bowl with hot/cold water mixer. [3]; Supply and install Base mounted flush tank water Western water closet system with lid connected to 110mm soil pipe [2]; Gate Valves [2]; Slow Closing Valve [2]; 1 meter length 10mm diameter Flexible Hose with insulated handle complete with fork support, index push, vacuum breaker [2]; 50mm diameter [37]; 75mm diameter [4]; 80mm diameter [11]; 100mm diameter [2]; 110mm diameter [12]; 13mm diameter [1]; 15mm diameter [1]; 20mm diameter [1]; 25mm diameter [19]; 32mm diameter [35]; 40mm diameter [12]; 50mm diameter [1]; 20mm diameter [5]; 25mm diameter [12]; Isolation Valve Size 20 [3]; Isolation Valve Size 25 [3]; Isolation Valve Size 32 [5]; Isolation Valve Size 40 [1]; Isolation Valve Size 50 [1]; 20 mm diameter spray head for cold water supply [3]; Supply and install Electric Water Heater set with connection [3]; Water meter complete with accessories. [3]; Roof drain [3]; Vent on a roof to exhaust air [3]; Floor drain 100x80mm [4]; Gully trap 300x300 mm [3]; inspection chamber, size 800x900x1000 [3]; Mini split actual capacity 2 Ton [1]; Ducted split actual capacity 4 Ton [2]; Supply, fabricate, install and testing factory fabricated metal ducts with flanges complete with supports, vanes, [40]; Supplying, installation testing & commissioning of external insulation on ducts [40]; Supply, fix, testing and commissioning of exhaust air/fresh air louvers of powder coated extruded aluminium construction. [1]; Providing, fixing, testing and commissioning of powder coated extruded aluminum sections grills and diffusers with dampers. [2]; Air Grills 150mm x150mm [2]; Air Diffuser 600mm x 600mm [6]; Supply, Installation & Testing of 2 hours Fire rated system for closing the openings between roo [1]; 4.5 KG CO2 Type Fire Extinguishers [4]; 6 KG ABC Type Fire Extinguishers [4]; Floor cleanout, size 75 mm diameter [2]; Floor cleanout, size 110 mm diameter [4]; GRP water tanks capacity of each 1000 liter complete with all fittings, all valves and concrete pad [3]; Guard Room 1 [1]; Guard Room 2 [1]; Guard Room 3 [1]; 30A, 2P AC Disconnect Switch [11]; 20A Duplex Receptacle Floor Mounted [12]; Twin Socket outlet [6]; Twin Socket outlet, Weather Proof [5]; Single gang Lighting switch [6]; 2way Single gang Lighting switch [2]; 36W LED linear Pendant lighting [14]; 36W LED Emergency linear Pendant lighting [6]; 13W recess mounted LED down light fitting [8]; 13W recess emergency mounted LED down light fitting with 1.5 Hr Battery [6]; 10.4W LED Exit light with 1.5 Hr Battery [3]; 4mm2 Cu./FRLSZH Cable [600]; 6mm2 Cu./FRLSZH Cable [110]; 8 Port Industrial PoE Switch 10/100BaseT (0 deg to +70 deg. Celsius) [31]; 06C Optical Fiber SM [2505]; 48C Optical Fiber SM [7010]; 48 Core Splice Closure [7]; Boom Barrier at Security Guard Room [6]; Pedestrian turnstile at Security Guard Room [6]; Access Control Unit [3]; Access Card Reader [3]; Magnetic Lock [3]; Break Glass [3]; Exit Push button [3]; Door Sensor [3]; Biometrics Reader [2]; Pole/Bollard mounted IP( PoE), Automatic Number Plate Recognition (ANPR, camera, 5MP,IP 66, IR illumin [6]; 12U rack dimension (W x H x L) 600 x 625 x 600 mm [1]; Fire Alarm Control panel with fire alarm zoning with Mimic panel with fire alarm zoning [4]; Main Fire Alarm Control panel with fire alarm zoning with Mimic panel with fire alarm zoning [1]; Supply and installation of the addressable manual call point with operation safety glass breaking and pushbutton [17]; Supply and installation of the photoelectric heat & smoke detector with base [41]; Sounder With Beacon [20]; Addressable Control module for Sounders [20]; Addressable Control module for HVAC System [2]; Addressable Monitor module for HVAC System [2]; 2C x 1.5 Sqm FR Rated Armored - Cable For Loop Wiring [1800]; DACT (Auto - Dailer) for 24x7 Civil Defence [1]; Transmission Communication cable - Fiber Optics 12Core [2500]; Transmission Communication cable - Ethernet Cable [500]; Supply, install to site and installation of power supply system for fire alarm control panel [1]; Supply, install to site and installation of power cable [1600]; Fire Fighter’s Telephone Centre [1]; Fireman’s Telephone Jack [2]; Voice Command Center [1] | 415,744.2 | GR&FE |  |
|  | SL121 | **Fence** |  | 2026-02-21 | 2026-06-30 |  |  |  |  |  |  |  |
| PRO-FE-CV-DL-80 |  | Material Delivery & Site Inspection for Civil Works for Fence | 97d | 2026-02-21 | 2026-06-30 | PRO-FE-CV-MF-60 SS+15d, PRO-FE-CV-MF-60 FF | 38d |  | 100 mm thickness lean concrete under the foundation [1500]; Foundation [7310]; Walls [1960]; Beams [288]; Columns [372]; Common brickwork. 300mm thick; vertical straight wall complete with accessories. [8775]; Two Layers of Bituminous Coating [39170]; 20x20 Approved Polysulfide Joint Sealant [415]; Supply and install 33mm thick Lexan cladding blue complete with necessary framings [1114.96]; Supply and install 50mm thick random cut stone cladding complete with 600m [14316.8]; Supply and install External plastering to walls and columns min. 15mm thick with cement mortar of specified grade including [16765]; Supply and install 2 coats of weatherproof paint at walls including one prime coat and [16765]; Guard room coping 350mm [57]; Guard room coping 450mm [27]; Stone coping 500mm [2555]; Stone coping 525mm [1224]; Supply and install MODON Signage with Logo Type 1 [24]; Supply and install MODON Signage Type 2 [24]; Supply and install "Triangle Style" signage [55]; Junction Box for lighting fixture [136]; Trench excavation to receive 2 nos 50mm diameter PVC Conduit, sand bedding and embedded with sa [3505]; Supply, Install, fixings, testing and commissioning 80W LED Projector waterproof DJ effect light including c [3]; Earth Pit [17]; Grounding rod 20mmX3m [9]; Grounding rod with Pit 20mmX3m [4]; Earthing Bar [3]; 120mm2 Tinned copper wire [200]; IR Intrusion Detection System Quad Beams (Tx & Rx) (SL-350 QDM) [60]; Control cable [3110]; CAT6A cable [3110]; Field Equipment Cabinet enclosed outdoor complete with precast concrete footing, suitable for parame [19]; Supply and install 800mm x 800mm x 800mm height concrete handhole with bituminous paint all aroun [19]; 800mm depth minimum Trench excavation to receive 3 nos 50mm diameter PVC Conduit with spacer, sand bedding an [1500]; Hot dipped galvanized cable conduits for CAT6A cable and Control Cables embedded to wall [420]; 400V, 3PH, 60Hz lighting control panel (LCP-02) [1]; 38W, 230V, 1PH, 60Hz fence, led linear uplight lighting, IP66 [136]; 4C-16mm2 CU/XLPE/PVC direct buried armored cable [1300]; 4C-10mm2 CU/XLPE/PVC direct buried armored cable [850]; 16mm2 CU/PVC wire [1300]; 10mm2 CU/PVC wire [850]; 4C-16mm2 CU/XLPE/PVC direct buried armored cable [4080]; 16mm2 CU/PVC wire [4080] | 4,619,556.89 | GR&FE |  |
|  | SL1211 | **Softscape and Planting Works** |  | 2026-08-03 | 2026-08-27 |  |  |  |  |  |  |  |
| PRO-FE-CV-DL-90 |  | Material Delivery & Site Inspection for Softscape and Planting Works | 21d | 2026-08-03 | 2026-08-27 | PRO-FE-CV-MF-70 | 26d | 0d | Price [679494 SAR] | 679,494.11 | UB | LS |

| ID | WBS | Activity | Duration | Start | Finish | Predecessors | Total float | Free float | Resources | Cost | 01- Network |
| --- | --- | --- | --- | --- | --- | --- | --- | --- | --- | --- | --- |
|  | LL | **Long Lead Time Items** |  | 2026-01-24 | 2026-11-23 |  |  |  |  |  |  |
|  | 2 | **Infrastructure Networks** |  | 2026-01-24 | 2026-10-25 |  |  |  |  |  |  |
|  | 2 | **CCTV System Wroks of Telecom Network** |  | 2026-01-24 | 2026-10-25 |  |  |  |  |  |  |
|  | 3 | **Issuance of Purchase Orders** |  | 2026-01-24 | 2026-03-18 |  |  |  |  |  |  |
| PRO-CTV-LL-PO-10 |  | Issuance of Purchase Order for Low Current Works of CCTV Complete System with All Accessories | 40d | 2026-01-24 | 2026-03-18 | ENG-MT-CTV-A-110 | 40d | 0d |  |  |  |
|  | 1 | **Manufacturing of Material** |  | 2026-03-19 | 2026-08-03 |  |  |  |  |  |  |
| PRO-CTV-LL-MF-10 |  | Manufacturing of Low Current Works for CCTV Complete System with All Accessories | 110d | 2026-03-19 | 2026-08-03 | PRO-CTV-LL-PO-10 | 40d | 0d |  |  |  |
|  | 2 | **Material Shipping/Custom Clearance/Delivery** |  | 2026-08-03 | 2026-09-07 |  |  |  |  |  |  |
| PRO-CTV-LL-SH/DL-10 |  | Material Delivery for Low Current Works of CCTV Complete System with All Accessories | 30d | 2026-08-03 | 2026-09-07 | PRO-CTV-LL-MF-10 | 40d | 0d |  |  |  |
|  | 4 | **Material Site Inspection** |  | 2026-09-07 | 2026-10-25 |  |  |  |  |  |  |
| PRO-CTV-LL-MSI-10 |  | Material Site Inspection for Low Current Works of CCTV Complete System with All Accessories | 40d | 2026-09-07 | 2026-10-25 | PRO-CTV-LL-SH/DL-10 | 40d | 21d | NVR Server with RAID (5, 6 or 10) to record all cameras storage 80TB with all hardware / software / licenses etc. [2]; VMS Server with RAID (5, 6 or 10) complete Hardware / Software with one Color Laser Printer and all associated [2]; Licenses for Cameras, Workstations and Keyboards [1]; Work Station (MMI with two monitors each, for Monitoring for CCTV & ACS) [1]; Keyboard with joystick for CCTV with all accessories as per specification [1]; Pole mounted IP( PoE) Fixed camera, 5MP,IP 66, IR illumination, 3-8mm varifocal, auto iris lens type [44]; Wall mounted IP( PoE) Fixed camera, 5MP,IP 66, IR illumination, 3-8mm varifocal, auto iris lens type [78]; 5MP Dome camera ceiling Mounted IP (PoE) indoor [17]; 5MP PTZ Multi Sensor Camera IP(PoE) 360 Degree View Outdoor with accessories (IP 66) [7]; 8 Port Industrial PoE Switch 10/100BaseT (0 deg to +70 deg. Celsius) [12]; Filed Equipment cabinet (FEC), with fan and ventilation, NEMEX 4X ,door, minimum size (600x600x400mm) [12]; IP Phone Communication server (hot standby) 50 Port equipped, Gateway, Gatekeeper, H.323, SIP, redundant Power etc. [3]; IP Phone Voice gateway [1]; Voice IP Phone [1]; NMS Server for IP phone and NETWORK Elements [1]; NMS Workstation [1]; Firm Ware, software & licenses [1]; Data Cable [1]; Power Cable [1]; Layer 3, 24 Port non-PoE switch10/1000BaseT/LX (-40 deg to +70 deg. Celsius), stack module and associated [2]; Layer 2, 24 Port non-PoE switch10/1000BaseT (-40 deg to +70 deg. Celsiu [6]; Network Management System Server [2]; Network Management System workstation [1]; 42U rack dimension (W x H x L) 800 x 2000 x 1000 mm [2]; 12U rack dimension (W x H x L) 600 x 625 x 600 mm [1]; 06C Optical Fiber SM [1820]; 48C Optical Fiber SM [5800]; 48 Core Splice Closure [7]; Optical fiber patch cord 5m [24]; Data Cable (STP CAT 6A) [10320]; 3C Power Cable armored 1.5mm2 [10320]; 3C Power Cable armored 2.5 mm2 [10320]; UTP CAT6A Patch Cord 1m/3m/5m [23]; Access Control Unit [5]; Access Card Reader [5]; Magnetic Lock [5]; Break Glass [4]; Exit Push button [5]; Door Sensor [5]; Biometrics Reader [8]; Smart Card Printer [1]; Card Issue Work Station [1]; Photographic Camera with stand [1]; Interface modules with CCTV, Fire and other systems [1] | 653,710.6 | TE |
|  | 1 | **Superstructure Works** |  | 2026-01-24 | 2026-11-23 |  |  |  |  |  |  |
|  | SL | **Pump Stations** |  | 2026-01-24 | 2026-11-23 |  |  |  |  |  |  |
|  | 1 | **Issuance of Purchase Orders** |  | 2026-01-24 | 2026-04-15 |  |  |  |  |  |  |
| PRO-SPS-LL-PO-10 |  | Issuance of Purchase Order for Electromechanical Works for Pump Stations | 60d | 2026-01-24 | 2026-04-15 | ENG-MT-SPS-MC-A-110 | 37d | 0d |  |  |  |
|  | 2 | **Manufacturing of Material** |  | 2026-04-15 | 2026-08-03 |  |  |  |  |  |  |
| PRO-SPS-LL-MF-10 |  | Manufacturing of Electromechanical Works for Pump Stations | 90d | 2026-04-15 | 2026-08-03 | PRO-SPS-LL-PO-10 | 37d | 0d |  |  |  |
|  | 3 | **Material Shipping/Custom Clearance/Delivery** |  | 2026-08-03 | 2026-10-01 |  |  |  |  |  |  |
| PRO-SPS-LL-SH/DL-10 |  | Material Delivery for Electromechanical Works for Pump Stations | 50d | 2026-08-03 | 2026-10-01 | PRO-SPS-LL-MF-10 | 37d | 0d |  |  |  |
|  | 4 | **Material Site Inspection** |  | 2026-10-01 | 2026-11-23 |  |  |  |  |  |  |
| PRO-SPS-LL-MSI-10 |  | Material Site Inspection for Electromechanical Works for Pump Stations | 45d | 2026-10-01 | 2026-11-23 | PRO-SPS-LL-SH/DL-10 | 37d | 18d |  |  |  |
|  | SL1 | **Lift Stations** |  | 2026-01-24 | 2026-11-23 |  |  |  |  |  |  |
|  | 1 | **Issuance of Purchase Orders** |  | 2026-01-24 | 2026-04-15 |  |  |  |  |  |  |
| PRO-LS-LL-PO-20 |  | Issuance of Purchase Order for Electromechanical Works for Lift Stations | 60d | 2026-01-24 | 2026-04-15 | ENG-MT-SPS-MC-A-110 | 41d | 0d |  |  |  |

| ID | WBS | Activity | Duration | Start | Finish | Predecessors | Total float | Free float | Resources | Cost | 01- Network | 08 Stage |
| --- | --- | --- | --- | --- | --- | --- | --- | --- | --- | --- | --- | --- |
|  | 2 | **Manufacturing of Material** |  | 2026-04-15 | 2026-08-03 |  |  |  |  |  |  |  |
| PRO-LS-LL-MF-20 |  | Manufacturing of Electromechanical Works for Lift Stations | 90d | 2026-04-15 | 2026-08-03 | PRO-LS-LL-PO-20 | 41d | 0d |  |  |  |  |
|  | 3 | **Material Shipping/Custom Clearance/Delivery** |  | 2026-08-03 | 2026-10-01 |  |  |  |  |  |  |  |
| PRO-LS-LL-SH/DL-20 |  | Material Delivery for Electromechanical Works for Lift Stations | 50d | 2026-08-03 | 2026-10-01 | PRO-LS-LL-MF-20 | 41d | 0d |  |  |  |  |
|  | 4 | **Material Site Inspection** |  | 2026-10-01 | 2026-11-23 |  |  |  |  |  |  |  |
| PRO-LS-LL-MSI-20 |  | Material Site Inspection for Electromechanical Works for Lift Stations | 45d | 2026-10-01 | 2026-11-23 | PRO-LS-LL-SH/DL-20 | 41d | 22d |  |  |  |  |
|  | SL2 | **Storage Tank (TSE)** |  | 2026-01-24 | 2026-11-23 |  |  |  |  |  |  |  |
|  | 1 | **Issuance of Purchase Orders** |  | 2026-01-24 | 2026-04-15 |  |  |  |  |  |  |  |
| PRO-TSE-LL-PO-30 |  | Issuance of Purchase Order for Electromechanical Works for Storage Tank (TSE) | 60d | 2026-01-24 | 2026-04-15 | ENG-MT-TSE-MC-A-120 | 41d | 0d |  |  |  |  |
|  | 2 | **Manufacturing of Material** |  | 2026-04-15 | 2026-08-09 |  |  |  |  |  |  |  |
| PRO-TSE-LL-MF-30 |  | Manufacturing of Electromechanical Works for Storage Tank (TSE) | 95d | 2026-04-15 | 2026-08-09 | PRO-TSE-LL-PO-30 | 41d | 0d |  |  |  |  |
|  | 3 | **Material Shipping/Custom Clearance/Delivery** |  | 2026-08-09 | 2026-10-01 |  |  |  |  |  |  |  |
| PRO-TSE-LL-SH/DL-30 |  | Material Delivery for Electromechanical Works for Storage Tank (TSE) | 45d | 2026-08-09 | 2026-10-01 | PRO-TSE-LL-MF-30 | 41d | 0d |  |  |  |  |
|  | 4 | **Material Site Inspection** |  | 2026-10-01 | 2026-11-23 |  |  |  |  |  |  |  |
| PRO-TSE-LL-MSI-30 |  | Material Site Inspection for Electromechanical Works for Storage Tank (TSE) | 45d | 2026-10-01 | 2026-11-23 | PRO-TSE-LL-SH/DL-30 | 41d | 22d |  |  |  |  |
|  | CON | **Construction Works** |  | 2026-02-24 | 2027-02-22 |  |  |  |  |  |  |  |
|  | INF | **Infrastructure Networks** |  | 2026-02-24 | 2026-12-27 |  |  |  |  |  |  |  |
|  | EW | **Earthworks** |  | 2026-02-24 | 2026-05-09 |  |  |  |  |  |  |  |
|  | EW | **Earthworks** |  | 2026-02-24 | 2026-05-09 |  |  |  |  |  |  |  |
| CO-EW-200 |  | Excavation Works Upto Design Level for Earthworks-P1 | 17d | 2026-02-24 | 2026-03-25 | MS-CS-PS SS, MOB-30, MOB-20, MOB-80, MOB-40, MOB-50, MOB-60 FS+15d, MOB-10, MOB-70, PRE-CON-MDC-10, PRE-CON-MDC-20, PRE-CON-MDC-30, PRE-CON-MDC-40, PRE-CON-MDC-50, PRE-CON-MDC-60, PRE-CON-MDC-70, PRE-CON-MDC-80, MS-CF-EBL, MS-CF-ENG | 0d |  | Excavations (including Roads , Plots and Pond) [200967]; Unskilled Labor [1632 h]; Dozer [1632 h]; Excavator [1632 h]; Loader [1632 h]; Dump Truck [3264 h] | 904,350.65 | RD | CON |
| CO-EW-210 |  | Excavation Works Upto Design Level for Earthworks-P2 | 18d | 2026-03-25 | 2026-04-15 | CO-EW-200, MS-CF-MOB | 0d |  | Excavations (including Roads , Plots and Pond) [100483]; Unskilled Labor [864 h]; Dozer [864 h]; Excavator [864 h]; Loader [864 h]; Dump Truck [1728 h] | 452,175.33 | RD | CON |
| CO-EW-110 |  | Embankments Works Upto Design Level for Earthworks | 20d | 2026-04-15 | 2026-05-09 | CO-EW-200 SS+10d, CO-EW-220 SS, CO-EW-220 FF | 0d |  | Embankments to the Site and Roads (including Roads , Plots and Pond) [314650]; Unskilled Labor [2240 h]; Dozer [2240 h]; Excavator [2240 h]; Loader [2240 h]; Dump Truck [4480 h] | 3,115,033.12 | RD | CON |
| CO-EW-220 |  | Excavation Works Upto Design Level for Earthworks-P3 | 18d | 2026-04-15 | 2026-05-06 | CO-EW-210 | 0d |  | Excavations (including Roads , Plots and Pond) [200967]; Unskilled Labor [1728 h]; Dozer [1728 h]; Excavator [1728 h]; Loader [1728 h]; Dump Truck [3456 h] | 904,350.65 | RD | CON |
|  | SD | **Storm Drainage Network** |  | 2026-04-15 | 2026-08-17 |  |  |  |  |  |  |  |
|  | MH25-MH12 | **FROM MH-25:MH-12** |  | 2026-04-15 | 2026-07-01 |  |  |  |  |  |  |  |
|  | ML | **Main Line Sections** |  | 2026-04-15 | 2026-05-21 |  |  |  |  |  |  |  |
| CO-SD-ML-100 |  | Trench Excavation and Bedding Works for Main Lines of Storm Drainage Network | 3d | 2026-04-15 | 2026-04-19 | CO-EW-200 SS+10d, CO-EW-110 SS, ENG-SH-SD-ML-A-110, ENG-MT-SD-ML-A-110, PRO-SD-1DL-110, CO-EW-220 SS | 0d |  | Depth Between 0m to 1.50m; Depth Between 0m to 1.50m [13.06]; Depth Between 1.50m to 2.50m [387.61]; Depth > 2.50m [2.06]; Depth Between 1.50m to 2.50m [75.35]; Depth Between 2.50m to 3.50m [60.36]; Depth > 3.50m [2.06]; Depth Between 2.50m to 3.50m [26.26]; Depth Between 0m to 1.50m [3.85]; Depth Between 1.50m to 2.50m [1.38]; Depth Between 2.50m to 3.50m [12.93]; Depth > 3.50m [0.96]; Depth Between 2.50m to 3.50m [16.64]; Depth Between 3.50m to 4.50m [51.01]; Depth > 4.50m [2.06]; Depth Between 3.50m to 4.50m [101.34]; Depth > 4.50m [3.44]; Skilled Labor [96 h]; Unskilled Labor [96 h]; Excavator [96 h] | 332,761.58 | SD | CON |
| CO-SD-ML-120 |  | Pipes Laying Works for Main Lines of Storm Drainage Network | 14d | 2026-04-19 | 2026-05-05 | CO-SD-ML-100, PRO-R25-SD-DL-120 | 0d |  | Depth Between 0m to 1.50m [23.51]; Depth Between 1.50m to 2.50m [697.7]; Depth > 2.50m [3.71]; Depth Between 1.50m to 2.50m [135.63]; Depth Between 2.50m to 3.50m [108.65]; Depth > 3.50m [3.71]; Depth Between 2.50m to 3.50m [47.27]; Depth Between 0m to 1.50m [6.93]; Depth Between 1.50m to 2.50m [2.48]; Depth Between 2.50m to 3.50m [23.27]; Depth > 3.50m [1.73]; Depth Between 2.50m to 3.50m [29.95]; Depth Between 3.50m to 4.50m [91.82]; Depth > 4.50m [3.71]; Depth Between 3.50m to 4.50m [182.41]; Depth > 4.50m [6.19]; Skilled Labor [224 h]; Unskilled Labor [448 h]; Plumber [224 h]; Excavator [224 h] | 598,970.84 | SD | CON |
| CO-SD-ML-130 |  | Trench Backfilling and Compaction Works for Main Lines of Storm Drainage Network | 14d | 2026-05-05 | 2026-05-21 | CO-SD-ML-120 | 0d |  | Depth Between 0m to 1.50m [10.45]; Depth Between 1.50m to 2.50m [310.09]; Depth > 2.50m [1.65]; Depth Between 1.50m to 2.50m [60.28]; Depth Between 2.50m to 3.50m [48.29]; Depth > 3.50m [1.65]; Depth Between 2.50m to 3.50m [21.01]; Depth Between 0m to 1.50m [3.08]; Depth Between 1.50m to 2.50m [1.1]; Depth Between 2.50m to 3.50m [10.34]; Depth > 3.50m [0.77]; Depth Between 2.50m to 3.50m [13.31]; Depth Between 3.50m to 4.50m [40.81]; Depth > 4.50m [1.65]; Depth Between 3.50m to 4.50m [81.07]; Depth > 4.50m [2.75]; Unskilled Labor [224 h]; Excavator [224 h]; JCB [224 h]; Dump Truck [224 h] | 266,209.26 | SD | CON |

| ID | WBS | Activity | Duration | Start | Finish | Predecessors | Total float | Free float | Resources | Cost | Activity ID N | 01- Network | 08 Stage |
| --- | --- | --- | --- | --- | --- | --- | --- | --- | --- | --- | --- | --- | --- |
|  | MH | **Manholes** |  | 2026-05-05 | 2026-06-08 |  |  |  |  |  |  |  |  |
| CO-SD-MH-180 |  | Trench Excavation and Bedding Works for Manholes of Storm Drainage Network | 7d | 2026-05-05 | 2026-05-13 | CO-SD-ML-120, ENG-MT-SD-ML-A-100, PRO-SD-1DL-100 | 17d | 0d | MH depth 1.5 - 2.5m [1.65]; MH depth 2.5 - 3.5m [1.35]; MH depth > 3.50m [0.15]; MH depth 2.5 -3.5m [0.15]; Skilled Labor [56 h]; Unskilled Labor [56 h]; Excavator [56 h] | 33,187.81 | CO-R26.S11-SD-180 | SD | CON |
| CO-SD-MH-190 |  | Install RC Footing Works for Manholes of Storm Drainage Network | 7d | 2026-05-13 | 2026-05-21 | CO-SD-MH-180, PRO-R25-SD-DL-100 | 17d | 0d | MH depth 1.5 - 2.5m [2.75]; MH depth 2.5 - 3.5m [2.25]; MH depth > 3.50m [0.25]; MH depth 2.5 -3.5m [0.25]; Skilled Labor [56 h]; Unskilled Labor [112 h]; Plumber [56 h]; Excavator [56 h] | 55,313.02 | CO-R26.S11-SD-190 | SD | CON |
| CO-SD-MH-200 |  | Install RC Wall Rings & Slab Works for Manholes of Storm Drainage Network | 4d | 2026-05-21 | 2026-05-31 | CO-SD-MH-190 | 17d | 0d | MH depth 1.5 - 2.5m [1.65]; MH depth 2.5 - 3.5m [1.35]; MH depth > 3.50m [0.15]; MH depth 2.5 -3.5m [0.15]; Unskilled Labor [64 h]; Plumber [32 h]; Excavator [32 h]; Mobile Crane [32 h] | 33,187.81 | CO-R26.S11-SD-200 | SD | CON |
| CO-SD-MH-220 |  | Backfilling Works for Manholes of Storm Drainage Network | 7d | 2026-05-31 | 2026-06-08 | CO-SD-MH-200, CO-SD-ML-130 FF | 17d | 0d | MH depth 1.5 - 2.5m [2.2]; MH depth 2.5 - 3.5m [1.8]; MH depth > 3.50m [0.2]; MH depth 2.5 -3.5m [0.2]; Unskilled Labor [56 h]; Excavator [56 h]; JCB [56 h]; Dump Truck [56 h] | 44,250.42 | CO-R26.S11-SD-220 | SD | CON |
|  | CB | **Catch Basin Sections** |  | 2026-05-13 | 2026-07-01 |  |  |  |  |  |  |  |  |
| CO-SD-CB-140 |  | Trench Excavation and Bedding Works for Catch Basins of Storm Drainage Network | 10d | 2026-05-13 | 2026-05-25 | CO-SD-MH-180, ENG-MT-SD-CB-A-110, PRO-SD-1DL-120, PRO-SD-1DL-130 | 25d | 8d | Single Catch Basin 1000mm x 1000mm [16.2]; Double Catch Basin 1200mm x 2300mm [0.3]; Skilled Labor [160 h]; Unskilled Labor [160 h]; Excavator [160 h] | 86,711.4 |  | SD | CON |
| CO-SD-CB-150 |  | Installation and Pipes Laying Connection Works for Catch Basins of Storm Drainage Network | 10d | 2026-06-08 | 2026-06-20 | CO-SD-CB-140, PRO-R25-SD-DL-110, PRO-R25-SD-DL-130, CO-SD-MH-220 | 17d | 0d | Single Catch Basin 1000mm x 1000mm [48.6]; Double Catch Basin 1200mm x 2300mm [0.9]; Skilled Labor [160 h]; Unskilled Labor [320 h]; Plumber [160 h]; Excavator [160 h] | 260,134.2 |  | SD | CON |
| CO-SD-CB-170 |  | Trench Backfilling and Compaction Works for Catch Basins of Storm Drainage Network | 10d | 2026-06-20 | 2026-07-01 | CO-SD-CB-150, CO-SD-ML-130 FF, CO-SD-MH-220 | 17d | 5d | Single Catch Basin 1000mm x 1000mm [21.6]; Double Catch Basin 1200mm x 2300mm [0.4]; Unskilled Labor [160 h]; Excavator [160 h]; JCB [160 h]; Dump Truck [160 h] | 115,615.2 |  | SD | CON |
|  | MH25-MH121 | **FROM MH-12:MH-01** |  | 2026-05-05 | 2026-08-17 |  |  |  |  |  |  |  |  |
|  | ML | **Main Line Sections** |  | 2026-05-05 | 2026-07-20 |  |  |  |  |  |  |  |  |
| CO-SD-ML-140 |  | Trench Excavation and Bedding Works for Main Lines of Storm Drainage Network | 20d | 2026-05-05 | 2026-06-02 | CO-SD-ML-100, PRO-R25-SW-DL-100 SS, CO-SD-ML-120 | 10d | 0d | Depth Between 0m to 1.50m [10.69]; Depth Between 1.50m to 2.50m [317.14]; Depth > 2.50m [1.69]; Depth Between 1.50m to 2.50m [61.65]; Depth Between 2.50m to 3.50m [49.39]; Depth > 3.50m [1.69]; Depth Between 2.50m to 3.50m [21.49]; Depth Between 0m to 1.50m [3.15]; Depth Between 1.50m to 2.50m [1.12]; Depth Between 2.50m to 3.50m [10.57]; Depth > 3.50m [0.79]; Depth Between 2.50m to 3.50m [13.61]; Depth Between 3.50m to 4.50m [41.74]; Depth > 4.50m [1.69]; Depth Between 3.50m to 4.50m [82.91]; Depth > 4.50m [2.81]; Skilled Labor [160 h]; Unskilled Labor [160 h]; Excavator [160 h] | 272,259.48 |  | SD | CON |
| CO-SD-ML-150 |  | Pipes Laying Works for Main Lines of Storm Drainage Network | 21d | 2026-06-02 | 2026-06-27 | CO-SD-ML-140, CO-SD-ML-120 | 10d | 0d | Depth Between 0m to 1.50m [19.24]; Depth Between 1.50m to 2.50m [570.85]; Depth > 2.50m [3.04]; Depth Between 1.50m to 2.50m [110.97]; Depth Between 2.50m to 3.50m [88.9]; Depth > 3.50m [3.04]; Depth Between 2.50m to 3.50m [38.68]; Depth Between 0m to 1.50m [5.67]; Depth Between 1.50m to 2.50m [2.02]; Depth Between 2.50m to 3.50m [19.04]; Depth > 3.50m [1.42]; Depth Between 2.50m to 3.50m [24.5]; Depth Between 3.50m to 4.50m [75.13]; Depth > 4.50m [3.04]; Depth Between 3.50m to 4.50m [149.24]; Depth > 4.50m [5.06]; Skilled Labor [168 h]; Unskilled Labor [336 h]; Plumber [168 h]; Excavator [168 h] | 490,067.05 |  | SD | CON |
| CO-SD-ML-160 |  | Trench Backfilling and Compaction Works for Main Lines of Storm Drainage Network | 20d | 2026-06-27 | 2026-07-20 | CO-SD-ML-150, CO-SD-ML-130 | 22d | 12d | Depth Between 0m to 1.50m [8.55]; Depth Between 1.50m to 2.50m [253.71]; Depth > 2.50m [1.35]; Depth Between 1.50m to 2.50m [49.32]; Depth Between 2.50m to 3.50m [39.51]; Depth > 3.50m [1.35]; Depth Between 2.50m to 3.50m [17.19]; Depth Between 0m to 1.50m [2.52]; Depth Between 1.50m to 2.50m [0.9]; Depth Between 2.50m to 3.50m [8.46]; Depth > 3.50m [0.63]; Depth Between 2.50m to 3.50m [10.89]; Depth Between 3.50m to 4.50m [33.39]; Depth > 4.50m [1.35]; Depth Between 3.50m to 4.50m [66.33]; Depth > 4.50m [2.25]; Unskilled Labor [160 h]; Excavator [160 h]; JCB [160 h]; Dump Truck [160 h] | 217,807.58 |  | SD | CON |
|  | MH | **Manholes** |  | 2026-06-27 | 2026-08-03 |  |  |  |  |  |  |  |  |
| CO-SD-MH-230 |  | Trench Excavation and Bedding Works for Manholes of Storm Drainage Network | 9d | 2026-06-27 | 2026-07-07 | CO-SD-ML-150, CO-SD-MH-180 | 10d | 0d | MH depth 1.5 - 2.5m [1.35]; MH depth 2.5 - 3.5m [1.2]; MH depth > 3.50m; MH depth 2.5 -3.5m [0.15]; Skilled Labor [72 h]; Unskilled Labor [72 h]; Excavator [72 h] | 26,522.45 | CO-R26.S11-SD-180 | SD | CON |
| CO-SD-MH-240 |  | Install RC Footing Works for Manholes of Storm Drainage Network | 7d | 2026-07-07 | 2026-07-15 | CO-SD-MH-230, CO-SD-MH-190 | 10d | 0d | MH depth 1.5 - 2.5m [2.25]; MH depth 2.5 - 3.5m [2]; MH depth > 3.50m; MH depth 2.5 -3.5m [0.25]; Skilled Labor [56 h]; Unskilled Labor [112 h]; Plumber [56 h]; Excavator [56 h] | 44,204.09 | CO-R26.S11-SD-190 | SD | CON |
| CO-SD-MH-250 |  | Install RC Wall Rings & Slab Works for Manholes of Storm Drainage Network | 7d | 2026-07-15 | 2026-07-23 | CO-SD-MH-240, CO-SD-MH-200 | 10d | 0d | MH depth 1.5 - 2.5m [1.35]; MH depth 2.5 - 3.5m [1.2]; MH depth > 3.50m; MH depth 2.5 -3.5m [0.15]; Unskilled Labor [112 h]; Plumber [56 h]; Excavator [56 h]; Mobile Crane [56 h] | 26,522.45 | CO-R26.S11-SD-200 | SD | CON |
| CO-SD-MH-260 |  | Backfilling Works for Manholes of Storm Drainage Network | 9d | 2026-07-23 | 2026-08-03 | CO-SD-MH-250, CO-SD-ML-160 FF, CO-SD-MH-220 | 10d | 0d | MH depth 1.5 - 2.5m [1.8]; MH depth 2.5 - 3.5m [1.6]; MH depth > 3.50m; MH depth 2.5 -3.5m [0.2]; Unskilled Labor [72 h]; Excavator [72 h]; JCB [72 h]; Dump Truck [72 h] | 35,363.27 | CO-R26.S11-SD-220 | SD | CON |
|  | CB | **Catch Basin Sections** |  | 2026-07-07 | 2026-08-17 |  |  |  |  |  |  |  |  |
| CO-SD-CB-180 |  | Trench Excavation and Bedding Works for Catch Basins of Storm Drainage Network | 9d | 2026-07-07 | 2026-07-18 | CO-SD-MH-230, CO-SD-CB-140, CO-SD-CB-170 | 12d | 0d | Single Catch Basin 1000mm x 1000mm [13.35]; Double Catch Basin 1200mm x 2300mm [0.3]; Skilled Labor [144 h]; Unskilled Labor [144 h]; Excavator [144 h] | 71,817.3 |  | SD | CON |
| CO-SD-CB-190 |  | Installation and Pipes Laying Connection Works for Catch Basins of Storm Drainage Network | 12d | 2026-07-18 | 2026-08-01 | CO-SD-CB-180, CO-SD-CB-150 | 12d | 2d | Single Catch Basin 1000mm x 1000mm [40.05]; Double Catch Basin 1200mm x 2300mm [0.9]; Skilled Labor [192 h]; Unskilled Labor [384 h]; Plumber [192 h]; Excavator [192 h] | 215,451.9 |  | SD | CON |
| CO-SD-CB-200 |  | Trench Backfilling and Compaction Works for Catch Basins of Storm Drainage Network | 12d | 2026-08-03 | 2026-08-17 | CO-SD-CB-190, CO-SD-ML-160 FF, CO-SD-CB-170, CO-SD-MH-260 | 10d | 0d | Single Catch Basin 1000mm x 1000mm [17.8]; Double Catch Basin 1200mm x 2300mm [0.4]; Unskilled Labor [192 h]; Excavator [192 h]; JCB [192 h]; Dump Truck [192 h] | 95,756.4 |  | SD | CON |
|  | SW | **Sewage Network** |  | 2026-05-13 | 2026-08-27 |  |  |  |  |  |  |  |  |
|  | 2 | **FROM MH-18:MH-10** |  | 2026-05-13 | 2026-08-04 |  |  |  |  |  |  |  |  |
|  | ML | **Main Line Sections** |  | 2026-05-13 | 2026-07-22 |  |  |  |  |  |  |  |  |
| CO-SW-ML-100 |  | Trench Excavation and Bedding Works for Main Lines of Sewage Network | 18d | 2026-05-13 | 2026-06-08 | ENG-SH-SW-ML-A-110, ENG-MT-SW-ML-A-110, PRO-SW-1DL-100, CO-SD-ML-130 SS+7d | 0d |  | Depth Between 0m to 1.50m [4]; Depth Between 1.50m to 2.50m [24.6]; Depth > 2.50m [1]; Depth Between 0m to 1.50m [2.2]; Depth Between 1.50m to 2.50m [160]; Depth Between 2.50m to 3.50m [7.5]; Depth > 3.50m [1.5]; HDPE Force Main (PE 100, SDR 11, PN 16 bar) DN 160 mm diameter, in trenches depth: 0- 1.5m [2.5]; HDPE Force Main (PE 100, SDR 11, PN 16 bar) DN 160 mm diameter, in trenches depth: 1.51- 2.5m [4]; Skilled Labor [144 h]; Unskilled Labor [144 h]; Excavator [144 h] | 41,612.09 |  | SW | CON |
| CO-SW-ML-120 |  | Pipes Laying Works for Main Lines of Sewage Network | 18d | 2026-06-08 | 2026-06-29 | CO-SW-ML-100 | 0d |  | Depth Between 0m to 1.50m [7.2]; Depth Between 1.50m to 2.50m [44.28]; Depth > 2.50m [1.8]; Depth Between 0m to 1.50m [3.96]; Depth Between 1.50m to 2.50m [288]; Depth Between 2.50m to 3.50m [13.5]; Depth > 3.50m [2.7]; HDPE Force Main (PE 100, SDR 11, PN 16 bar) DN 160 mm diameter, in trenches depth: 0- 1.5m [4.5]; HDPE Force Main (PE 100, SDR 11, PN 16 bar) DN 160 mm diameter, in trenches depth: 1.51- 2.5m [7.2]; Skilled Labor [144 h]; Unskilled Labor [288 h]; Plumber [144 h]; Excavator [144 h] | 74,901.77 |  | SW | CON |
| CO-SW-ML-130 |  | Trench Backfilling and Compaction Works for Main Lines of Sewage Network | 20d | 2026-06-29 | 2026-07-22 | CO-SW-ML-120 | 27d | 6d | Depth Between 0m to 1.50m [3.2]; Depth Between 1.50m to 2.50m [19.68]; Depth > 2.50m [0.8]; Depth Between 0m to 1.50m [1.76]; Depth Between 1.50m to 2.50m [128]; Depth Between 2.50m to 3.50m [6]; Depth > 3.50m [1.2]; HDPE Force Main (PE 100, SDR 11, PN 16 bar) DN 160 mm diameter, in trenches depth: 0- 1.5m [2]; HDPE Force Main (PE 100, SDR 11, PN 16 bar) DN 160 mm diameter, in trenches depth: 1.51- 2.5m [3.2]; Unskilled Labor [160 h]; Excavator [160 h]; JCB [160 h]; Dump Truck [160 h] | 33,289.67 |  | SW | CON |

| ID | WBS | Activity | Duration | Start | Finish | Predecessors | Total float | Free float | Resources | Cost | Activity ID N | 01- Network | 08 Stage |
| --- | --- | --- | --- | --- | --- | --- | --- | --- | --- | --- | --- | --- | --- |
|  | 1 | **Manholes** |  | 2026-06-29 | 2026-08-04 |  |  |  |  |  |  |  |  |
| CO-SW-MH-160 |  | Excavation Works for Main Line Manholes of Sewage Network | 7d | 2026-06-29 | 2026-07-07 | CO-SW-ML-120, ENG-MT-SW-ML-A-100, PRO-SW-1DL-110 | 0d |  | Depth: 0 - 1.5m [0.15]; Depth: 1.51 - 2.5m [2.1]; Depth: 2.51 - 3.5m [0.15]; Depth > 3.50m; Skilled Labor [56 h]; Unskilled Labor [56 h]; Excavator [56 h] | 4,403.61 | CO-R26.S11-SW-160 | SW | CON |
| CO-SW-MH-170 |  | Installation RC Footing Works for Main Line Manholes of Sewage Network | 8d | 2026-07-07 | 2026-07-16 | CO-SW-MH-160, CO-SW-ML-120 FF | 2d | 0d | Depth: 0 - 1.5m [0.2]; Depth: 1.51 - 2.5m [2.8]; Depth: 2.51 - 3.5m [0.2]; Depth > 3.50m; Unskilled Labor [128 h]; Plumber [64 h]; Excavator [64 h]; Mobile Crane [64 h] | 5,871.48 | CO-R26.S11-SW-170 | SW | CON |
| CO-SW-MH-180 |  | Install Grp Liner Wall Works for Main Line Manholes of Sewage Network | 8d | 2026-07-16 | 2026-07-26 | CO-SW-MH-170 | 7d | 0d | Depth: 0 - 1.5m [0.2]; Depth: 1.51 - 2.5m [2.8]; Depth: 2.51 - 3.5m [0.2]; Depth > 3.50m; Unskilled Labor [128 h]; Plumber [64 h]; Excavator [64 h]; Mobile Crane [64 h] | 5,871.48 | CO-R26.S11-SW-180 | SW | CON |
| CO-SW-MH-190 |  | Pouring Grp Liner Wall Works for Main Line Manholes of Sewage Network | 4d | 2026-07-26 | 2026-07-30 | CO-SW-MH-180 | 16d | 0d | Depth: 0 - 1.5m [0.05]; Depth: 1.51 - 2.5m [0.7]; Depth: 2.51 - 3.5m [0.05]; Depth > 3.50m; Skilled Labor [32 h]; Unskilled Labor [64 h]; Mason [32 h] | 1,467.87 | CO-R26.S11-SW-190 | SW | CON |
| CO-SW-MH-200 |  | Backfilling Works for Main Line Manholes of Sewage Network | 4d | 2026-07-30 | 2026-08-04 | CO-SW-MH-190, CO-SW-ML-130 FF | 16d |  | Depth: 0 - 1.5m [0.2]; Depth: 1.51 - 2.5m [2.8]; Depth: 2.51 - 3.5m [0.2]; Depth > 3.50m; Unskilled Labor [32 h]; Excavator [32 h]; JCB [32 h]; Dump Truck [32 h] | 5,871.48 | CO-R26.S11-SW-200 | SW | CON |
|  | 1 | **FROM MH-10:MH-01** |  | 2026-06-08 | 2026-08-27 |  |  |  |  |  |  |  |  |
|  | ML | **Main Line Sections** |  | 2026-06-08 | 2026-07-20 |  |  |  |  |  |  |  |  |
| CO-SW-ML-140 |  | Trench Excavation and Bedding Works for Main Lines of Sewage Network | 12d | 2026-06-08 | 2026-06-22 | CO-SW-ML-100, PRO-R25-SW-DL-100 | 1d | 0d | Depth Between 0m to 1.50m [6]; Depth Between 1.50m to 2.50m [36.9]; Depth > 2.50m [1.5]; Depth Between 0m to 1.50m [3.3]; Depth Between 1.50m to 2.50m [240]; Depth Between 2.50m to 3.50m [11.25]; Depth > 3.50m [2.25]; HDPE Force Main (PE 100, SDR 11, PN 16 bar) DN 160 mm diameter, in trenches depth: 0- 1.5m [3.75]; HDPE Force Main (PE 100, SDR 11, PN 16 bar) DN 160 mm diameter, in trenches depth: 1.51- 2.5m [6]; Skilled Labor [96 h]; Unskilled Labor [96 h]; Excavator [96 h] | 62,418.14 |  | SW | CON |
| CO-SW-ML-150 |  | Pipes Laying Works for Main Lines of Sewage Network | 12d | 2026-06-22 | 2026-07-06 | CO-SW-ML-140, CO-SW-ML-120 SS | 1d | 0d | Depth Between 0m to 1.50m [10.8]; Depth Between 1.50m to 2.50m [66.42]; Depth > 2.50m [2.7]; Depth Between 0m to 1.50m [5.94]; Depth Between 1.50m to 2.50m [432]; Depth Between 2.50m to 3.50m [20.25]; Depth > 3.50m [4.05]; HDPE Force Main (PE 100, SDR 11, PN 16 bar) DN 160 mm diameter, in trenches depth: 0- 1.5m [6.75]; HDPE Force Main (PE 100, SDR 11, PN 16 bar) DN 160 mm diameter, in trenches depth: 1.51- 2.5m [10.8]; Skilled Labor [96 h]; Unskilled Labor [192 h]; Plumber [96 h]; Excavator [96 h] | 112,352.65 |  | SW | CON |
| CO-SW-ML-160 |  | Trench Backfilling and Compaction Works for Main Lines of Sewage Network | 12d | 2026-07-06 | 2026-07-20 | CO-SW-ML-150, CO-SW-ML-130 SS | 33d |  | Depth Between 0m to 1.50m [4.8]; Depth Between 1.50m to 2.50m [29.52]; Depth > 2.50m [1.2]; Depth Between 0m to 1.50m [2.64]; Depth Between 1.50m to 2.50m [192]; Depth Between 2.50m to 3.50m [9]; Depth > 3.50m [1.8]; HDPE Force Main (PE 100, SDR 11, PN 16 bar) DN 160 mm diameter, in trenches depth: 0- 1.5m [3]; HDPE Force Main (PE 100, SDR 11, PN 16 bar) DN 160 mm diameter, in trenches depth: 1.51- 2.5m [4.8]; Unskilled Labor [96 h]; Excavator [96 h]; JCB [96 h]; Dump Truck [96 h] | 49,934.51 |  | SW | CON |
|  | 1 | **Manholes** |  | 2026-07-07 | 2026-08-27 |  |  |  |  |  |  |  |  |
| CO-SW-MH-210 |  | Excavation Works for Main Line Manholes of Sewage Network | 10d | 2026-07-07 | 2026-07-19 | CO-SW-ML-150, CO-SW-MH-160, PRO-R25-SW-DL-110 | 0d |  | Depth: 0 - 1.5m [0.15]; Depth: 1.51 - 2.5m [3.15]; Depth: 2.51 - 3.5m [0.15]; Depth > 3.50m [0.15]; Skilled Labor [80 h]; Unskilled Labor [80 h]; Excavator [80 h] | 7,251.98 | CO-R26.S11-SW-160 | SW | CON |
| CO-SW-MH-220 |  | Installation RC Footing Works for Main Line Manholes of Sewage Network | 13d | 2026-07-19 | 2026-08-03 | CO-SW-MH-210, CO-SW-MH-170 | 0d |  | Depth: 0 - 1.5m [0.2]; Depth: 1.51 - 2.5m [4.2]; Depth: 2.51 - 3.5m [0.2]; Depth > 3.50m [0.2]; Unskilled Labor [208 h]; Plumber [104 h]; Excavator [104 h]; Mobile Crane [104 h] | 9,669.31 | CO-R26.S11-SW-170 | SW | CON |
| CO-SW-MH-230 |  | Install Grp Liner Wall Works for Main Line Manholes of Sewage Network | 13d | 2026-08-03 | 2026-08-18 | CO-SW-MH-220, CO-SW-MH-180 | 0d |  | Depth: 0 - 1.5m [0.2]; Depth: 1.51 - 2.5m [4.2]; Depth: 2.51 - 3.5m [0.2]; Depth > 3.50m [0.2]; Unskilled Labor [208 h]; Plumber [104 h]; Excavator [104 h]; Mobile Crane [104 h] | 9,669.31 | CO-R26.S11-SW-180 | SW | CON |
| CO-SW-MH-240 |  | Pouring Grp Liner Wall Works for Main Line Manholes of Sewage Network | 4d | 2026-08-18 | 2026-08-23 | CO-SW-MH-230, CO-SW-MH-190 | 0d |  | Depth: 0 - 1.5m [0.05]; Depth: 1.51 - 2.5m [1.05]; Depth: 2.51 - 3.5m [0.05]; Depth > 3.50m [0.05]; Skilled Labor [32 h]; Unskilled Labor [64 h]; Mason [32 h] | 2,417.33 | CO-R26.S11-SW-190 | SW | CON |
| CO-SW-MH-250 |  | Backfilling Works for Main Line Manholes of Sewage Network | 4d | 2026-08-23 | 2026-08-27 | CO-SW-MH-240, CO-SW-ML-160 FF, CO-SW-MH-200 | 0d |  | Depth: 0 - 1.5m [0.2]; Depth: 1.51 - 2.5m [4.2]; Depth: 2.51 - 3.5m [0.2]; Depth > 3.50m [0.2]; Unskilled Labor [32 h]; Excavator [32 h]; JCB [32 h]; Dump Truck [32 h] | 9,669.31 | CO-R26.S11-SW-200 | SW | CON |
|  | PW | **Potable Water Network** |  | 2026-08-27 | 2026-11-22 |  |  |  |  |  |  |  |  |
|  | ML | **Main Line Sections** |  | 2026-08-27 | 2026-10-10 |  |  |  |  |  |  |  |  |
| CO-PW-ML-100 |  | Trench Excavation and Bedding Works for Main Lines of Potable Water Network | 12d | 2026-08-27 | 2026-09-10 | ENG-SH-PW-ML-A-110, ENG-MT-PW-ML-A-100, PRO-PW-1DL-100, PRO-R25-PW-DL-100, CO-SW-ML-130 SS+7d, CO-SW-MH-250 | 0d |  | Depth Between 0m to 1.50m [1.5]; Depth Between 1.50m to 2.50m [1.5]; Depth > 2.50m [0.5]; Depth Between 0m to 1.50m [105]; Depth Between 1.50m to 2.50m [70]; Depth > 2.50m [2.5]; Depth Between 0m to 1.50m [12.5]; Depth Between 1.50m to 2.50m [2.5]; Depth > 2.50m [1.25]; Depth Between 0m to 1.50m [80]; Depth Between 1.50m to 2.50m [327.5]; Depth > 2.50m [5]; Skilled Labor [192 h]; Unskilled Labor [192 h]; Excavator [192 h] | 97,196.23 |  | PW | CON |
| CO-PW-ML-110 |  | Pipes Laying and accessories for Main Lines of Potable Water Network | 12d | 2026-09-10 | 2026-09-26 | CO-PW-ML-100 | 0d |  | Depth Between 0m to 1.50m [2.7]; Depth Between 1.50m to 2.50m [2.7]; Depth > 2.50m [0.9]; Depth Between 0m to 1.50m [189]; Depth Between 1.50m to 2.50m [126]; Depth > 2.50m [4.5]; Depth Between 0m to 1.50m [22.5]; Depth Between 1.50m to 2.50m [4.5]; Depth > 2.50m [2.25]; Depth Between 0m to 1.50m [144]; Depth Between 1.50m to 2.50m [589.5]; Depth > 2.50m [9]; Skilled Labor [192 h]; Unskilled Labor [384 h]; Plumber [192 h]; Excavator [192 h] | 174,953.21 |  | PW | CON |
| CO-PW-ML-130 |  | Trench Backfilling and Compaction Works for Main Lines of Potable Water Network | 12d | 2026-09-26 | 2026-10-10 | CO-PW-ML-110 | 0d |  | Depth Between 0m to 1.50m [1.2]; Depth Between 1.50m to 2.50m [1.2]; Depth > 2.50m [0.4]; Depth Between 0m to 1.50m [84]; Depth Between 1.50m to 2.50m [56]; Depth > 2.50m [2]; Depth Between 0m to 1.50m [10]; Depth Between 1.50m to 2.50m [2]; Depth > 2.50m [1]; Depth Between 0m to 1.50m [64]; Depth Between 1.50m to 2.50m [262]; Depth > 2.50m [4]; Unskilled Labor [192 h]; Excavator [192 h]; JCB [192 h]; Dump Truck [192 h] | 77,756.98 |  | PW | CON |
|  | VC | **Valve Chamber** |  | 2026-10-10 | 2026-10-28 |  |  |  |  |  |  |  |  |
| CO-PW-VC-170 |  | Excavation Works for Main Line Valves and Valve Chambers of Potable Water Network | 2d | 2026-10-10 | 2026-10-12 | CO-PW-ML-110, ENG-MT-PW-ML-A-110, PRO-PW-1DL-110, CO-PW-ML-130 | 0d |  | Wash out chamber (2500x 2500mm) [0.5]; Air valve chamber (1000x 1000 mm) [0.25]; Skilled Labor [16 h]; Unskilled Labor [16 h]; Excavator [16 h] | 10,050 | CO-R26.S11-PW-170 | PW | CON |
| CO-PW-VC180 |  | Installation Works for Valve Chambers of Potable Water Network | 4d | 2026-10-12 | 2026-10-17 | CO-PW-VC-170 | 0d |  | Wash out chamber (2500x 2500mm) [0.9]; Air valve chamber (1000x 1000 mm) [0.45]; Unskilled Labor [64 h]; Plumber [32 h]; Excavator [32 h]; Mobile Crane [32 h] | 18,090 | CO-R26.S11-PW-180 | PW | CON |
| CO-PW-VC-190 |  | Installation Works for Valves of Potable Water Network | 7d | 2026-10-17 | 2026-10-25 | CO-PW-VC180, PRO-PW-1DL-110, PRO-R25-PW-DL-110 | 0d |  | Gate valves Dia 50 mm [1]; Gate valves Dia 100 mm [12]; Gate valves Dia 150 mm [17]; Gate valves Dia 250 mm [9]; Air valves with Dia 50 mm [1]; Washout valve Dia 100 mm [2]; Flow meter chamber (1500x 2500 mm) [1]; Flow meter dia 100 mm [1]; Unskilled Labor [112 h]; Plumber [56 h] | 137,644.8 | CO-R26.S11-PW-190 | PW | CON |
| CO-PW-VC-220 |  | Backfilling Works for Main Line Valves and Valve Chambers of Potable Water Network | 3d | 2026-10-25 | 2026-10-28 | CO-PW-VC-190, CO-PW-ML-130 FF | 0d |  | Wash out chamber (2500x 2500mm) [0.4]; Air valve chamber (1000x 1000 mm) [0.2]; Unskilled Labor [24 h]; Excavator [24 h]; JCB [24 h]; Dump Truck [24 h] | 8,040 | CO-R26.S11-PW-220 | PW | CON |

| ID | WBS | Activity | Duration | Start | Finish | Predecessors | Total float | Free float | Resources | Cost | 01- Network | 08 Stage | Activity ID N |
| --- | --- | --- | --- | --- | --- | --- | --- | --- | --- | --- | --- | --- | --- |
|  | FH | **Fire Hydrant** |  | 2026-10-28 | 2026-11-22 |  |  |  |  |  |  |  |  |
| CO-PW-FH-140 |  | Excavation Works for Fire Hydrants of Potable Water Network | 7d | 2026-10-28 | 2026-11-05 | CO-PW-VC-170, ENG-SH-PW-FH-A-110, ENG-MT-PW-FH-A-100, PRO-PW-1DL-120, CO-PW-ML-130, CO-PW-VC180, CO-PW-VC-220, PRO-R25-PW-DL-120 | 0d |  | 3-outlet fire hydrant (2 x 2.5 inch and 1 x 4.5 inch) in the form of a separate dry vacuum cylinder, complete according to drawings. [4.25]; Skilled Labor [56 h]; Unskilled Labor [56 h]; Excavator [56 h] | 32,461.5 | PW | CON |  |
| CO-PW-FH-150 |  | Installation Works for Fire Hydrant of Potable Water Network | 7d | 2026-11-05 | 2026-11-14 | CO-PW-FH-140 | 0d |  | 3-outlet fire hydrant (2 x 2.5 inch and 1 x 4.5 inch) in the form of a separate dry vacuum cylinder, complete according to drawings. [7.65]; Skilled Labor [56 h]; Unskilled Labor [112 h]; Plumber [56 h]; Excavator [56 h] | 58,430.7 | PW | CON |  |
| CO-PW-FH-160 |  | Trench Backfilling and Compaction Works for Fire Hydrants of Potable Water Network | 7d | 2026-11-14 | 2026-11-22 | CO-PW-FH-150, CO-PW-VC-220 FF | 0d |  | 3-outlet fire hydrant (2 x 2.5 inch and 1 x 4.5 inch) in the form of a separate dry vacuum cylinder, complete according to drawings. [3.4]; Unskilled Labor [56 h]; Excavator [56 h]; JCB [56 h]; Dump Truck [56 h] | 25,969.2 | PW | CON |  |
|  | IR | **Irrigation Network** |  | 2026-08-27 | 2026-12-08 |  |  |  |  |  |  |  |  |
|  | ML | **Main Line Pipes** |  | 2026-08-27 | 2026-12-08 |  |  |  |  |  |  |  |  |
| CO-IR-ML-100 |  | Trench Excavation and Bedding Works for Main Lines of Irrigation Network | 21d | 2026-08-27 | 2026-09-21 | ENG-SH-IR-ML-A-110, ENG-MT-IR-ML-A-100, PRO-IR-1DL-100, PRO-R25-IR-DL-100, CO-PW-ML-100 SS | 0d |  | pipe line O.D 32 mm PN 10, in depth 0 to 1.5 m [837.5]; pipe line O.D 40 mm PN 10, in depth 0 to 1.5 m [462.5]; pipe line O.D 50 mm PN 10, in depth 0 to 1.5 m [62.5]; Skilled Labor [336 h]; Unskilled Labor [336 h]; Excavator [336 h] | 32,361 | IR | CON |  |
| CO-IR-ML-110 |  | Pipes Laying Works for Main Lines of Irrigation Network | 21d | 2026-09-21 | 2026-10-17 | CO-IR-ML-100, PRO-IR-1DL-100, CO-PW-ML-110 SS | 0d |  | pipe line O.D 32 mm PN 10, in depth 0 to 1.5 m [1507.5]; pipe line O.D 40 mm PN 10, in depth 0 to 1.5 m [832.5]; pipe line O.D 50 mm PN 10, in depth 0 to 1.5 m [112.5]; Skilled Labor [336 h]; Unskilled Labor [672 h]; Plumber [336 h]; Excavator [336 h] | 58,249.8 | IR | CON |  |
| CO-IR-ML-120 |  | Installation Works for Main Line Valves of Irrigation Network | 12d | 2026-10-17 | 2026-10-31 | CO-IR-ML-110, ENG-MT-IR-ML-A-110, PRO-IR-1DL-110, PRO-R25-IR-DL-110, CO-SW-MH-250 | 0d |  | Gate valve 50 mm PN16 [7]; Direct Burried Gate valve 40 mm PN16 [12]; Flushing Bronze gate valve dia 1.5" inside PVC box [19]; Air release valve 1.5" inside PVC box [19]; Extra flexible pressure compensating on surface inline dripline`s, O.D. is 16.1 mm [12000]; Electrical Solenoid Valve ( 1.5") inside PVC box [12]; Electrical Solenoid Valve ( 2") inside PVC box [7]; Quick coupling valve 1" inside a round valve box 10" size with a manual gate valve, hose swivel and key with all accessories [53]; Advanced Irrigation controller subject to client approval, can connect with Centarl Control system [1]; Decoder cables 12 AWG between valves and controllers, The cables shall be pulled through 32Ø UPVC conduit [3500]; Preparing the irrigation program for the entire system and providing technical services for monitoring and controlling the central irrigation systems [1]; Unskilled Labor [192 h]; Plumber [96 h] | 383,668.8 | IR | CON |  |
| CO-IR-ML-130 |  | Trench Backfilling and Compaction Works for Main Lines of Irrigation Network | 21d | 2026-10-31 | 2026-11-24 | CO-IR-ML-120, CO-PW-FH-140 SS, CO-PW-FH-140 FF | 0d |  | pipe line O.D 32 mm PN 10, in depth 0 to 1.5 m [670]; pipe line O.D 40 mm PN 10, in depth 0 to 1.5 m [370]; pipe line O.D 50 mm PN 10, in depth 0 to 1.5 m [50]; Unskilled Labor [336 h]; Excavator [336 h]; JCB [336 h]; Dump Truck [336 h] | 25,888.8 | IR | CON |  |
| CO-IR-ML-140 |  | Installation Works for Bulbblers And Sprinklers of Irrigation Network | 12d | 2026-11-24 | 2026-12-08 | CO-IR-ML-130 | 0d |  | Pressure–compensating bubblers 110 Lit/Hr [850]; Unskilled Labor [192 h]; Plumber [96 h] | 9,681.5 | IR | CON |  |
|  | TSE | **Treated Sewage Effluent (Tse)** |  | 2026-08-27 | 2026-12-08 |  |  |  |  |  |  |  |  |
|  | ML | **Main Line Pipes** |  | 2026-08-27 | 2026-12-08 |  |  |  |  |  |  |  |  |
| CO-TSE-ML-150 |  | Trench Excavation and Bedding Works for Main Lines of Treated Sewage Effluent (Tse) | 18d | 2026-08-27 | 2026-09-17 | ENG-SH-TSE-ML-A-120, ENG-MT-IR-ML-A-120, PRO-TSE-1DL-120, PRO-R25-TSE-DL-120, CO-IR-ML-100 SS | 9d | 3d | Depth Between 0m to 1.50m [2.5]; Depth Between 1.50m to 2.50m [1.25]; Depth > 2.50m [0.5]; Depth Between 0m to 1.50m [230]; Depth Between 0m to 1.50m [17.5]; Depth Between 1.50m to 2.50m [11.25]; Depth > 2.50m [2.5]; Depth Between 0m to 1.50m [212.5]; Depth Between 1.50m to 2.50m [65]; Depth > 2.50m [6.25]; Depth Between 0m to 1.50m [15]; Depth Between 1.50m to 2.50m [10]; Depth > 2.50m [2]; Skilled Labor [144 h]; Unskilled Labor [144 h]; Excavator [144 h] | 51,411.78 | TSE | CON |  |
| CO-TSE-ML-160 |  | Pipes Laying Works for Main Lines of Treated Sewage Effluent (Tse) | 18d | 2026-09-21 | 2026-10-13 | CO-TSE-ML-150, PRO-TSE-1DL-120, CO-IR-ML-110 SS | 6d | 3d | Depth Between 0m to 1.50m [4.5]; Depth Between 1.50m to 2.50m [2.25]; Depth > 2.50m [0.9]; Depth Between 0m to 1.50m [414]; Depth Between 0m to 1.50m [31.5]; Depth Between 1.50m to 2.50m [20.25]; Depth > 2.50m [4.5]; Depth Between 0m to 1.50m [382.5]; Depth Between 1.50m to 2.50m [117]; Depth > 2.50m [11.25]; Depth Between 0m to 1.50m [27]; Depth Between 1.50m to 2.50m [18]; Depth > 2.50m [3.6]; Skilled Labor [144 h]; Unskilled Labor [288 h]; Plumber [144 h]; Excavator [144 h] | 92,541.2 | TSE | CON |  |
| CO-TSE-ML-170 |  | Installation Works for Main Line Valves of Treated Sewage Effluent (Tse) | 12d | 2026-10-17 | 2026-10-31 | CO-TSE-ML-160, ENG-MT-IR-ML-A-130, PRO-TSE-1DL-130, PRO-R25-TSE-DL-130, CO-IR-ML-120 SS | 3d | 0d | Gate valves dia 50 mm [1]; Gate valves dia 100 mm [14]; Gate valves dia 150 mm [5]; Gate valves dia 200 mm [2]; Air valves with dia 50 mm [1]; Washout valve dia 100 mm [2]; Flow meter dia 150 mm [1]; Unskilled Labor [192 h]; Plumber [96 h] | 85,304.4 | TSE | CON |  |
| CO-TSE-ML-180 |  | Trench Backfilling and Compaction Works for Treated Sewage Effluent (Tse) | 18d | 2026-10-31 | 2026-11-21 | CO-TSE-ML-170, CO-IR-ML-130 SS | 3d | 0d | Depth Between 0m to 1.50m [2]; Depth Between 1.50m to 2.50m [1]; Depth > 2.50m [0.4]; Depth Between 0m to 1.50m [184]; Depth Between 0m to 1.50m [14]; Depth Between 1.50m to 2.50m [9]; Depth > 2.50m [2]; Depth Between 0m to 1.50m [170]; Depth Between 1.50m to 2.50m [52]; Depth > 2.50m [5]; Depth Between 0m to 1.50m [12]; Depth Between 1.50m to 2.50m [8]; Depth > 2.50m [1.6]; Unskilled Labor [144 h]; Excavator [144 h]; JCB [144 h]; Dump Truck [144 h] | 41,129.42 | TSE | CON |  |
| CO-TSE-ML-190 |  | Installation Works for Valve and Washout Chambers of Treated Sewage Effluent (Tse) | 12d | 2026-11-24 | 2026-12-08 | CO-TSE-ML-180, CO-IR-ML-140 SS | 0d |  | Wash out chamber (2500x 2500mm) [2]; Air valve chamber (1000x 1000 mm) [3.51]; Flow meter chamber (1500x 3000 mm) [1]; Unskilled Labor [192 h]; Plumber [96 h]; Excavator [96 h]; Mobile Crane [96 h] | 84,889 | TSE | CON |  |
|  | MV | **Medium Voltage Network** |  | 2026-09-10 | 2026-11-24 |  |  |  |  |  |  |  |  |
|  | CW | **Cabling Works** |  | 2026-09-10 | 2026-11-24 |  |  |  |  |  |  |  |  |
| CO-MV-ML-250 |  | Trench Excavation and Bedding Works for Medium Voltage Network | 21d | 2026-09-10 | 2026-10-06 | ENG-SH-MV-A-110, ENG-MT-MV-ML-A-100, PRO-MV-1DL-100, PRO-MV-DL-100, CO-TSE-ML-150 SS, CO-SW-TF-100 | 10d | 0d | Excavation for Trench size 40cm wide and 80cm deep (for 1 cable) [200.56]; Excavation for Trench Size 60cm wide and 80cm deep (for 2 cables) [100.1]; Excavation for Trench Size 90cm wide and 80cm deep (for 3 cables) [139.32]; Excavation for Trench Size 180cm wide and 80cm deep (for 6 cables) [61.92]; Excavation for Trench Size 210 cm wide and 80cm deep (for 7 cables) [72.24]; Excavation for Trench Size 240cm wide and 80cm deep (for 8 cables) [441.7]; Unskilled Labor [168 h]; Excavator [168 h]; JCB [168 h] | 27,905.12 | MV | CON |  |
| CO-MV-ML-260 |  | Cable Laying Works for Medium Voltage Network | 21d | 2026-10-06 | 2026-10-31 | CO-MV-ML-250 | 10d | 0d | Duct bank for (33) cables [88.2]; Duct bank for (21) cables [140]; Duct bank for (15) cables [42.06]; HV Cable Road Crossing [44.91]; Electrical Technician [168 h]; Cable Drum Trailer [168 h]; Boom Truck [168 h]; Pulling Machine [168 h] | 311,799.5 | MV | CON |  |
| CO-MV-ML-270 |  | Trench Backfilling and Compaction Works for Medium Voltage Network | 21d | 2026-10-31 | 2026-11-24 | CO-MV-ML-260 | 10d | 0d | Duct bank for (33) cables [25.2]; Duct bank for (21) cables [40]; Duct bank for (15) cables [12.02]; HV Cable Road Crossing [12.83]; Unskilled Labor [168 h]; Excavator [168 h]; JCB [168 h]; Dump Truck [168 h] | 89,085.57 | MV | CON |  |
|  | SL | **Street Lighting Network** |  | 2026-09-10 | 2026-12-07 |  |  |  |  |  |  |  |  |
|  | LP | **Lighting Poles Works** |  | 2026-09-10 | 2026-11-09 |  |  |  |  |  |  |  |  |
| CO-SL-LP-300 |  | Foundation Excavation Works for Lighting Poles of Street Lighting Network | 12d | 2026-09-10 | 2026-09-26 | ENG-SH-LV-A-120, ENG-SH-SL-A-110, ENG-MT-SL-A-100, PRO-R25-SL-DL-110, CO-MV-ML-250 SS | 19d | 0d | Lighting poles with 1 arm, height of (12) meters, including the power distribution box, cables, and RCC foundation. [3.9]; Lighting poles with 2 arms, height of (12) meters, including the power distribution box, cables, and RCC foundation. [3.6]; Unskilled Labor [96 h]; Excavator [96 h]; JCB [96 h]; Dump Truck [96 h] | 20,069.85 | SL | CON |  |
| CO-SL-LP-310 |  | Installation Works for Lighting Poles Foundation of Street Lighting Network | 12d | 2026-09-26 | 2026-10-10 | CO-SL-LP-300 | 19d | 0d | Lighting poles with 1 arm, height of (12) meters, including the power distribution box, cables, and RCC foundation. [7.8]; Lighting poles with 2 arms, height of (12) meters, including the power distribution box, cables, and RCC foundation. [7.2]; Skilled Labor [96 h]; Unskilled Labor [96 h]; Boom Truck [96 h] | 40,139.7 | SL | CON |  |
| CO-SL-LP-320 |  | Installation Works for Lighting Poles of Street Lighting Network | 14d | 2026-10-10 | 2026-10-26 | CO-SL-LP-310, ENG-MT-SL-A-110, PRO-R25-SL-DL-120 | 19d | 0d | Lighting poles with 1 arm, height of (12) meters, including the power distribution box, cables, and RCC foundation. [15.6]; Lighting poles with 2 arms, height of (12) meters, including the power distribution box, cables, and RCC foundation. [14.4]; Skilled Labor [112 h]; Electrical Technician [112 h]; Boom Truck [112 h] | 80,279.4 | SL | CON |  |
| CO-SL-LP-210 |  | Backfilling Works for Lighting Poles of Street Lighting Network | 12d | 2026-10-26 | 2026-11-09 | CO-SL-LP-320 | 19d | 0d | Lighting poles with 1 arm, height of (12) meters, including the power distribution box, cables, and RCC foundation. [3.9]; Lighting poles with 2 arms, height of (12) meters, including the power distribution box, cables, and RCC foundation. [3.6]; Unskilled Labor [96 h]; Excavator [96 h]; JCB [96 h]; Dump Truck [96 h] | 20,069.85 | SL | CON | CO-R26.S11-SL-210 |

| ID | WBS | Activity | Duration | Start | Finish | Predecessors | Total float | Free float | Resources | Cost | 01- Network | 08 Stage | Activity ID N |
| --- | --- | --- | --- | --- | --- | --- | --- | --- | --- | --- | --- | --- | --- |
|  | CW | **Cabling Works** |  | 2026-09-26 | 2026-11-07 |  |  |  |  |  |  |  |  |
| CO-SL-CL-250 |  | Trench Excavation and Bedding Works for Street Lighting Network | 10d | 2026-09-26 | 2026-10-07 | CO-SL-LP-310 SS, ENG-SH-LV-A-120, ENG-SH-SL-A-110, ENG-MT-SL-ML-A-100, PRO-SL-1DL-100, PRO-R25-SL-DL-100 | 19d | 0d | Road crossing ducts, 2 ways (2 x 150mm HDPE) [228.69]; Road crossing ducts, 2 ways (2 x 110mm UPVC) [90.85]; Road crossing ducts, 3 ways (3 x 110mm UPVC) [30.19]; Unskilled Labor [240 h]; Excavator [240 h]; JCB [240 h] | 51,516.23 | SL | CON |  |
| CO-SL-CL-260 |  | Cable Laying Works for Street Lighting Network | 10d | 2026-10-07 | 2026-10-19 | CO-SL-CL-250 | 19d | 0d | 4C-300mm2 CU/XLPE / PVC ARMORED CABLE [56]; 4C-240mm2 CU/XLPE / PVC ARMORED CABLE [32]; 4C-185mm2 CU/XLPE / PVC ARMORED CABLE [32]; 4C-50mm2 CU/XLPE / PVC ARMORED CABLE [120]; 4C-16mm2 CU/XLPE / PVC ARMORED CABLE [2788]; 4C-16MM2 CU/XLPE / PVC CABLE [1116]; 1Cx150sq.mm2,Cu, PVC wire [60]; 1Cx120sq.mm2,Cu, PVC wire [60]; 1Cx95sq.mm,Cu, PVC wire [32]; 1Cx70sq.mm2,Cu, PVC wire [16]; 1Cx25sq.mm2,Cu, PVC wire [60]; 1Cx16sq.mm2,Cu, PVC wire [2788]; 1Cx10sq.mm2,Cu, PVC wire [40]; Electrical Technician [240 h]; Cable Drum Trailer [240 h]; Boom Truck [240 h]; Pulling Machine [240 h] | 256,245.52 | SL | CON |  |
| CO-SL-CL-270 |  | Trench Backfilling and Compaction Works for Street Lighting Network | 10d | 2026-10-26 | 2026-11-07 | CO-SL-CL-260, CO-SL-LP-210 SS | 21d | 2d | 4C-300mm2 CU/XLPE / PVC ARMORED CABLE [14]; 4C-240mm2 CU/XLPE / PVC ARMORED CABLE [8]; 4C-185mm2 CU/XLPE / PVC ARMORED CABLE [8]; 4C-50mm2 CU/XLPE / PVC ARMORED CABLE [30]; 4C-16mm2 CU/XLPE / PVC ARMORED CABLE [697]; 4C-16MM2 CU/XLPE / PVC CABLE [279]; 1Cx150sq.mm2,Cu, PVC wire [15]; 1Cx120sq.mm2,Cu, PVC wire [15]; 1Cx95sq.mm,Cu, PVC wire [8]; 1Cx70sq.mm2,Cu, PVC wire [4]; 1Cx25sq.mm2,Cu, PVC wire [15]; 1Cx16sq.mm2,Cu, PVC wire [697]; 1Cx10sq.mm2,Cu, PVC wire [10]; Unskilled Labor [240 h]; Excavator [240 h]; JCB [240 h]; Dump Truck [240 h] | 64,061.38 | SL | CON |  |
|  | DPB | **Distrubution Panel Boards** |  | 2026-11-09 | 2026-12-07 |  |  |  |  |  |  |  |  |
| CO-SL-DB-250 |  | Foundation Excavation Works For Panel Boards of Street Lighting Network | 6d | 2026-11-09 | 2026-11-16 | CO-SL-LP-210, CO-SL-CL-270, ENG-MT-SL-DB-A-100 | 19d | 0d | Street Lighting panels LCP (01) [0.2]; Unskilled Labor [48 h]; Excavator [48 h]; JCB [48 h]; Dump Truck [48 h] | 3,210.77 | SL | CON |  |
| CO-SL-DB-260 |  | Installation Works for Panel Board Concrete Foundations of Street Lighting Network | 6d | 2026-11-16 | 2026-11-23 | CO-SL-DB-250, PRO-R25-SL-DL-160 | 19d | 0d | Street Lighting panels LCP (01) [0.2]; Skilled Labor [48 h]; Unskilled Labor [48 h]; Boom Truck [48 h] | 3,210.77 | SL | CON |  |
| CO-SL-DB-270 |  | Installation Works for Lighting Panel Boards of Street Lighting Network | 6d | 2026-11-23 | 2026-11-30 | CO-SL-DB-260 | 19d | 0d | Street Lighting panels LCP (01) [0.4]; Skilled Labor [48 h]; Electrical Technician [48 h]; Boom Truck [48 h] | 6,421.55 | SL | CON |  |
| CO-SL-DB-220 |  | A wall of concrete blocks to install the KWH meter of Street Lighting Network | 6d | 2026-11-30 | 2026-12-07 | CO-SL-DB-270 | 25d | 6d | Supply and installation of KWH meter mounting frame including concrete block for installation of KWH meter [6]; Unskilled Labor [96 h]; Mason [48 h] | 7,308.36 | SL | CON | CO-R26.S11-SL-220 |
|  | TE | **Telecom Network** |  | 2026-09-26 | 2026-12-05 |  |  |  |  |  |  |  |  |
|  | PD | **Ducts Works** |  | 2026-09-26 | 2026-11-01 |  |  |  |  |  |  |  |  |
| CO-TE-DW-100 |  | Trench Excavation and Bedding Works for Ducts of Telecom Network | 7d | 2026-09-26 | 2026-10-04 | ENG-SH-TE-A-110, ENG-MT-TE-A-100, PRO-TE-1DL-100, PRO-R25-TE-DL-100, CO-SL-CL-250 SS | 22d | 3d | 2-ways ducts, 50mm diameter [129]; 6-ways ducts, 110mm diameter [520.5]; 9-ways ducts, 6 x 160mm & 2 x 100mm [763.5]; Skilled Labor [168 h]; Unskilled Labor [168 h]; Excavator [168 h] | 184,036.6 | TE | CON |  |
| CO-TE-DW-110 |  | Pipes Laying Works for Ducts of Telecom Network | 7d | 2026-10-07 | 2026-10-15 | CO-TE-DW-100, CO-SL-CL-260 SS | 19d | 0d | 2-ways ducts, 50mm diameter [283.8]; 6-ways ducts, 110mm diameter [1145.1]; 9-ways ducts, 6 x 160mm & 2 x 100mm [1679.7]; Unskilled Labor [336 h]; Electrical Technician [168 h]; Excavator [168 h] | 404,880.53 | TE | CON |  |
| CO-TE-DW-130 |  | Trench Backfilling and Compaction Works for Ducts of Telecom Network | 7d | 2026-10-15 | 2026-10-24 | CO-TE-DW-110 | 27d | 0d | 2-ways ducts, 50mm diameter [103.2]; 6-ways ducts, 110mm diameter [416.4]; 9-ways ducts, 6 x 160mm & 2 x 100mm [610.8]; Unskilled Labor [168 h]; Excavator [168 h]; JCB [168 h]; Dump Truck [168 h] | 147,229.28 | TE | CON |  |
| CO-TE-DW-120 |  | Pouring Road Crossing Concrete Encasement | 7d | 2026-10-24 | 2026-11-01 | CO-TE-DW-130 | 27d | 8d | 6 PVC ducts 150x200 mm (60mm diameter) [162]; 6 PVC ducts 600x800 mm (120mm diameter) [282]; 6 PVC ducts 800x800 mm (170mm diameter) [402]; Unskilled Labor [112 h]; Mason [56 h] | 119,940.72 | TE | CON |  |
|  | MH | **Manholes Works** |  | 2026-10-17 | 2026-11-10 |  |  |  |  |  |  |  |  |
| CO-TE-MH-140 |  | Excavation Works for Manholes of Telecom Network | 7d | 2026-10-17 | 2026-10-25 | CO-TE-DW-110 FS+1d, ENG-SH-TE-A-110, ENG-MT-TE-A-110, PRO-TE-1DL-110, PRO-R25-TE-DL-110 | 19d | 0d | Manhole Type 2 (1600 x 1600 x 2000) [6.25]; Manhole Type 3 (1200 x 1200 x 2000) [7.75]; Skilled Labor [112 h]; Unskilled Labor [112 h]; Excavator [112 h] | 44,688.33 | TE | CON |  |
| CO-TE-MH-150 |  | Installation Works for Manholes of Telecom Network | 7d | 2026-10-25 | 2026-11-02 | CO-TE-MH-140 | 19d | 0d | Manhole Type 2 (1600 x 1600 x 2000) [13.75]; Manhole Type 3 (1200 x 1200 x 2000) [17.05]; Unskilled Labor [224 h]; Plumber [112 h]; Excavator [112 h]; Mobile Crane [112 h] | 98,314.33 | TE | CON |  |
| CO-TE-MH-160 |  | Backfilling Works for Manholes of Telecom Network | 7d | 2026-11-02 | 2026-11-10 | CO-TE-MH-150, CO-TE-DW-120 FF | 19d | 0d | Manhole Type 2 (1600 x 1600 x 2000) [5]; Manhole Type 3 (1200 x 1200 x 2000) [6.2]; Unskilled Labor [112 h]; Excavator [112 h]; JCB [112 h]; Dump Truck [112 h] | 35,750.66 | TE | CON |  |
|  | DD | **CCTV System Wroks** |  | 2026-11-10 | 2026-12-05 |  |  |  |  |  |  |  |  |
| CO-TE-CTV-100 |  | Digging and Pulling Trenches PVC ducts , Backfilling, Excavations, of Power Cable | 7d | 2026-11-10 | 2026-11-18 | CO-TE-MH-160, CO-TE-DW-120, ENG-SH-MSN-A-120, ENG-SH-CTV-A-110, ENG-MT-CTV-A-100, PRO-CTV-1DL-100, PRO-R25-CTV-DL-100, PRO-CTV-LL-MSI-10 FF | 19d | 0d | 6 PVC ducts 200x150 mm (60mm diameter) [138]; 2-ways ducts, 50mm diameter [498]; Unskilled Labor [56 h]; Electrical Technician [112 h]; Excavator [56 h] | 30,041.46 | TE | CON |  |
| CO-TE-CTV-110 |  | Installation of Network Cable Cat.6A from Network switch to CCTV Camera and ACS Device | 7d | 2026-11-18 | 2026-11-26 | CO-TE-CTV-100 | 19d | 0d | NVR Server with RAID (5, 6 or 10) to record all cameras storage 80TB with all hardware / software / licenses etc. [2]; VMS Server with RAID (5, 6 or 10) complete Hardware / Software with one Color Laser Printer and all associated [2]; Licenses for Cameras, Workstations and Keyboards [1]; Work Station (MMI with two monitors each, for Monitoring for CCTV & ACS) [1]; Keyboard with joystick for CCTV with all accessories as per specification [1]; Pole mounted IP( PoE) Fixed camera, 5MP,IP 66, IR illumination, 3-8mm varifocal, auto iris lens type [44]; Wall mounted IP( PoE) Fixed camera, 5MP,IP 66, IR illumination, 3-8mm varifocal, auto iris lens type [78]; 5MP Dome camera ceiling Mounted IP (PoE) indoor [17]; 5MP PTZ Multi Sensor Camera IP(PoE) 360 Degree View Outdoor with accessories (IP 66) [7]; 8 Port Industrial PoE Switch 10/100BaseT (0 deg to +70 deg. Celsius) [12]; Filed Equipment cabinet (FEC), with fan and ventilation, NEMEX 4X ,door, minimum size (600x600x400mm) [12]; IP Phone Communication server (hot standby) 50 Port equipped, Gateway, Gatekeeper, H.323, SIP, redundant Power etc. [3]; IP Phone Voice gateway [1]; Voice IP Phone [1]; NMS Server for IP phone and NETWORK Elements [1]; NMS Workstation [1]; Firm Ware, software & licenses [1]; Data Cable [1]; Power Cable [1]; Layer 3, 24 Port non-PoE switch10/1000BaseT/LX (-40 deg to +70 deg. Celsius), stack module and associated [2]; Layer 2, 24 Port non-PoE switch10/1000BaseT (-40 deg to +70 deg. Celsiu [6]; Network Management System Server [2]; Network Management System workstation [1]; 42U rack dimension (W x H x L) 800 x 2000 x 1000 mm [2]; 12U rack dimension (W x H x L) 600 x 625 x 600 mm [1]; 06C Optical Fiber SM [1820]; 48C Optical Fiber SM [5800]; 48 Core Splice Closure [7]; Optical fiber patch cord 5m [24]; Data Cable (STP CAT 6A) [10320]; 3C Power Cable armored 1.5mm2 [10320]; 3C Power Cable armored 2.5 mm2 [10320]; UTP CAT6A Patch Cord 1m/3m/5m [23]; Unskilled Labor [56 h]; Electrical Technician [112 h] | 2,105,266.63 | TE | CON |  |
| CO-TE-CTV-130 |  | Installation of Access Control System | 7d | 2026-11-26 | 2026-12-05 | CO-TE-CTV-110 | 19d | 0d | Access Control Unit [5]; Access Card Reader [5]; Magnetic Lock [5]; Break Glass [4]; Exit Push button [5]; Door Sensor [5]; Biometrics Reader [8]; Unskilled Labor [56 h]; Electrical Technician [112 h] | 29,191.9 | TE | CON |  |
|  | RD | **Road Works** |  | 2026-11-02 | 2026-12-13 |  |  |  |  |  |  |  |  |
|  | 3 | **ST+1000:ST+1531** |  | 2026-11-02 | 2026-11-26 |  |  |  |  |  |  |  |  |
|  | RD | **Pre-Bituminous Construction** |  | 2026-11-02 | 2026-11-26 |  |  |  |  |  |  |  |  |
| CO-RD-PB-140 |  | Subgrade Layer for Road Works | 7d | 2026-11-02 | 2026-11-10 | CO-EW-200, CO-EW-110, CO-SD-ML-130, CO-SD-MH-220, CO-SD-CB-170, CO-SW-ML-130, CO-SW-MH-200, CO-PW-ML-130, CO-PW-VC-220, CO-IR-ML-130 SS, CO-TSE-ML-180 SS+2d, CO-MV-ML-270 SS+2d, CO-SL-LP-210 SS+1d, CO-SL-CL-270 SS+1d, CO-TE-DW-120 SS, PRO-R25-RD-DL-100, CO-EW-220 | 41d | 5d | Subgrade [1037.05]; Loader [56 h]; Dump Truck [56 h]; Water Tanker [56 h]; Compactor [56 h]; Grader [56 h] | 34,046.35 | RD | CON |  |
| CO-RD-PB-150 |  | Aggregate Base Course Layer for Road Works | 7d | 2026-11-18 | 2026-11-26 | CO-RD-PB-140, PRO-R25-RD-DL-110 | 38d | 0d | Aggregate base course [518.7]; Loader [56 h]; Dump Truck [56 h]; Water Tanker [56 h]; Compactor [56 h]; Grader [56 h] | 35,100.43 | RD | CON |  |

| ID | WBS | Activity | Duration | Start | Finish | Predecessors | Total float | Free float | Resources | Cost | 01- Network | 08 Stage | Activity ID N |
| --- | --- | --- | --- | --- | --- | --- | --- | --- | --- | --- | --- | --- | --- |
|  | 2 | **ST+500:ST+1000** |  | 2026-11-16 | 2026-12-05 |  |  |  |  |  |  |  |  |
|  | RD | **Pre-Bituminous Construction** |  | 2026-11-16 | 2026-12-05 |  |  |  |  |  |  |  |  |
| CO-RD-PB-120 |  | Subgrade Layer for Road Works | 7d | 2026-11-16 | 2026-11-24 | CO-RD-PB-140, CO-SD-ML-160, CO-SD-MH-260, CO-SD-CB-200, CO-SW-ML-160, CO-SW-MH-250, CO-PW-ML-130, CO-PW-VC-220, CO-PW-FH-160 SS+2d, CO-TSE-ML-180 SS+2d, CO-IR-ML-130 SS+2d, CO-MV-ML-270 SS+2d, CO-SL-LP-210, CO-SL-CL-270, CO-TE-DW-120, CO-TE-MH-160 | 36d | 0d | Subgrade [1037.05]; Loader [56 h]; Dump Truck [56 h]; Water Tanker [56 h]; Compactor [56 h]; Grader [56 h] | 34,046.35 | RD | CON |  |
| CO-RD-PB-130 |  | Aggregate Base Course Layer for Road Works | 7d | 2026-11-26 | 2026-12-05 | CO-RD-PB-120, CO-RD-PB-150 | 38d | 0d | Aggregate base course [518.7]; Loader [56 h]; Dump Truck [56 h]; Water Tanker [56 h]; Compactor [56 h]; Grader [56 h] | 35,100.43 | RD | CON |  |
|  | 1 | **ST+01:ST+500** |  | 2026-11-24 | 2026-12-13 |  |  |  |  |  |  |  |  |
|  | RD | **Pre-Bituminous Construction** |  | 2026-11-24 | 2026-12-13 |  |  |  |  |  |  |  |  |
| CO-RD-PB-100 |  | Subgrade Layer for Road Works | 7d | 2026-11-24 | 2026-12-02 | CO-RD-PB-120 | 41d | 0d | Subgrade [888.9]; Loader [56 h]; Dump Truck [56 h]; Water Tanker [56 h]; Compactor [56 h]; Grader [56 h] | 29,182.59 | RD | CON |  |
| CO-RD-PB-110 |  | Aggregate Base Course Layer for Road Works | 7d | 2026-12-05 | 2026-12-13 | CO-RD-PB-100, CO-RD-PB-130 | 40d | 0d | Aggregate base course [444.6]; Loader [56 h]; Dump Truck [56 h]; Water Tanker [56 h]; Compactor [56 h]; Grader [56 h] | 30,086.08 | RD | CON |  |
|  | 3 | **Finishes for Infrastructure Networks** |  | 2026-08-17 | 2026-12-27 |  |  |  |  |  |  |  |  |
|  | 11 | **Storm Drainage Network** |  | 2026-08-17 | 2026-10-24 |  |  |  |  |  |  |  |  |
|  | TF | **Testing and Finishes** |  | 2026-08-17 | 2026-10-24 |  |  |  |  |  |  |  |  |
| CO-SD-ML-TF-100 |  | Testing Work for Pipes of Storm Drainage Network | 12d | 2026-08-17 | 2026-08-31 | CO-SD-ML-130, CO-SD-CB-200 | 25d | 0d | Depth Between 0m to 1.50m [9.5]; Depth Between 1.50m to 2.50m [281.9]; Depth > 2.50m [1.5]; Depth Between 1.50m to 2.50m [54.8]; Depth Between 2.50m to 3.50m [43.9]; Depth > 3.50m [1.5]; Depth Between 2.50m to 3.50m [19.1]; Depth Between 0m to 1.50m [2.8]; Depth Between 1.50m to 2.50m [1]; Depth Between 2.50m to 3.50m [9.4]; Depth > 3.50m [0.7]; Depth Between 2.50m to 3.50m [12.1]; Depth Between 3.50m to 4.50m [37.1]; Depth > 4.50m [1.5]; Depth Between 3.50m to 4.50m [73.7]; Depth > 4.50m [2.5]; Unskilled Labor [192 h]; Plumber [192 h]; Water Tanker [192 h] | 242,008.42 | SD | CON |  |
| CO-SD-CB-TF-130 |  | Catch Basin Internal Finishes (Benching ) for Storm Drainage Network | 12d | 2026-08-31 | 2026-09-14 | CO-SD-CB-170, CO-SD-CB-200, CO-SD-ML-TF-100 | 25d | 0d | Single Catch Basin 1000mm x 1000mm [9.85]; Double Catch Basin 1200mm x 2300mm [0.2]; Unskilled Labor [192 h]; Mason [192 h]; JCB [192 h] | 52,842.9 | SD | CON |  |
| CO-SD-CB-TF-160 |  | Testing Works for Catch Basins of Storm Drainage Network | 8d | 2026-09-14 | 2026-09-24 | CO-SD-CB-170, CO-SD-ML-TF-100, CO-SD-CB-TF-130 | 25d | 0d | Single Catch Basin 1000mm x 1000mm [19.7]; Double Catch Basin 1200mm x 2300mm [0.4]; Unskilled Labor [128 h]; Plumber [128 h]; Water Tanker [128 h] | 105,685.8 | SD | CON |  |
| CO-SD-CB-TF-110 |  | Install Catch Basin Cover Works for External Finishes of Storm Drainage Network | 12d | 2026-09-24 | 2026-10-08 | CO-SD-CB-TF-130, PRO-SD-1DL-150, PRO-R25-SD-DL-150 FF, CO-SD-CB-TF-160 | 25d | 0d | Single Catch Basin 1000mm x 1000mm [9.85]; Double Catch Basin 1200mm x 2300mm [0.2]; Unskilled Labor [192 h]; Mason [192 h]; JCB [192 h] | 52,842.9 | SD | CON |  |
| CO-SD-MH-TF-120 |  | Main Manhole Internal Finishes (Benching ) for Storm Drainage Network | 12d | 2026-10-08 | 2026-10-22 | CO-SD-MH-220, PRO-SD-1DL-140, CO-SD-CB-200, CO-SD-CB-TF-160, CO-SD-CB-TF-110 | 25d | 0d | MH depth 1.5 - 2.5m [3]; MH depth 2.5 - 3.5m [2.55]; MH depth > 3.50m [0.15]; MH depth 2.5 -3.5m [0.3]; Unskilled Labor [96 h]; Mason [96 h]; JCB [96 h] | 59,710.27 | SD | CON |  |
| CO-SD-MH-TF-210 |  | Testing Works for Manholes of Storm Drainage Network | 1d | 2026-10-22 | 2026-10-24 | CO-SD-MH-220, CO-SD-ML-TF-100, CO-SD-MH-TF-120, PRO-R25-SD-DL-140, CO-SD-CB-TF-110 | 25d | 0d | MH depth 1.5 - 2.5m [2]; MH depth 2.5 - 3.5m [1.7]; MH depth > 3.50m [0.1]; MH depth 2.5 -3.5m [0.2]; Unskilled Labor [24 h]; Plumber [24 h]; Water Tanker [24 h] | 39,806.84 | SD | CON | CO-R26.S11-SD-210 |
|  | 10 | **Sewage Network** |  | 2026-08-27 | 2026-10-24 |  |  |  |  |  |  |  |  |
|  | TF | **Testing and Finishes** |  | 2026-08-27 | 2026-10-24 |  |  |  |  |  |  |  |  |
| CO-SW-TF-100 |  | Final Testing For Main Line of Sewage Network | 12d | 2026-08-27 | 2026-09-10 | CO-SW-ML-130, CO-SW-MH-250 | 10d | 0d | Depth Between 0m to 1.50m [4]; Depth Between 1.50m to 2.50m [24.6]; Depth > 2.50m [1]; Depth Between 0m to 1.50m [2.2]; Depth Between 1.50m to 2.50m [160]; Depth Between 2.50m to 3.50m [7.5]; Depth > 3.50m [1.5]; HDPE Force Main (PE 100, SDR 11, PN 16 bar) DN 160 mm diameter, in trenches depth: 0- 1.5m [2.5]; HDPE Force Main (PE 100, SDR 11, PN 16 bar) DN 160 mm diameter, in trenches depth: 1.51- 2.5m [4]; Unskilled Labor [96 h]; Plumber [96 h]; Water Tanker [96 h] | 41,612.09 | SW | CON |  |
| CO-SW-TF-130 |  | Main Manhole Internal Finishes (Benching + Insulation) of Sewage Network | 16d | 2026-09-10 | 2026-09-30 | CO-SW-MH-200, CO-SW-TF-100 | 40d | 0d | Depth: 0 - 1.5m [0.1]; Depth: 1.51 - 2.5m [1.75]; Depth: 2.51 - 3.5m [0.1]; Depth > 3.50m [0.05]; Unskilled Labor [128 h]; Mason [128 h]; JCB [128 h] | 3,885.2 | SW | CON |  |
| CO-SW-TF-110 |  | Install Manhole Cover Works for External Finishes of Sewage Network | 16d | 2026-09-30 | 2026-10-19 | CO-SW-TF-130, PRO-SW-1DL-120, PRO-R25-SW-DL-120 | 40d | 0d | Depth: 0 - 1.5m [0.1]; Depth: 1.51 - 2.5m [1.75]; Depth: 2.51 - 3.5m [0.1]; Depth > 3.50m [0.05]; Unskilled Labor [128 h]; Mason [128 h]; JCB [128 h] | 3,885.2 | SW | CON |  |
| CO-SW-TF-210 |  | Testing Works for Main Line Manholes of Sewage Network | 4d | 2026-10-19 | 2026-10-24 | CO-SW-TF-130, CO-SW-TF-110 | 40d | 0d | Depth: 0 - 1.5m [0.2]; Depth: 1.51 - 2.5m [3.5]; Depth: 2.51 - 3.5m [0.2]; Depth > 3.50m [0.1]; Unskilled Labor [64 h]; Plumber [64 h]; Water Tanker [64 h] | 7,770.39 | SW | CON | CO-R26.S11-SW-210 |
|  | 9 | **Potable Water Network** |  | 2026-11-22 | 2026-12-27 |  |  |  |  |  |  |  |  |
|  | TF | **Testing and Finishes** |  | 2026-11-22 | 2026-12-27 |  |  |  |  |  |  |  |  |
| CO-PW-TF-110 |  | Testing Work for Main Line of Potable Water Network | 10d | 2026-11-22 | 2026-12-03 | CO-PW-ML-130, CO-PW-FH-160 | 0d |  | Depth Between 0m to 1.50m [0.6]; Depth Between 1.50m to 2.50m [0.6]; Depth > 2.50m [0.2]; Depth Between 0m to 1.50m [42]; Depth Between 1.50m to 2.50m [28]; Depth > 2.50m [1]; Depth Between 0m to 1.50m [5]; Depth Between 1.50m to 2.50m [1]; Depth > 2.50m [0.5]; Depth Between 0m to 1.50m [32]; Depth Between 1.50m to 2.50m [131]; Depth > 2.50m [2]; Unskilled Labor [160 h]; Plumber [160 h]; Water Tanker [160 h] | 38,878.49 | PW | CON |  |
| CO-PW-TF-120 |  | Fire Hydrant Finishies (S.Box + Safety + Marker Post ) of Potable Water Network | 10d | 2026-12-03 | 2026-12-15 | CO-PW-FH-160, ENG-MT-PW-TF-A-100, CO-PW-TF-110 | 0d |  | 3-outlet fire hydrant (2 x 2.5 inch and 1 x 4.5 inch) in the form of a separate dry vacuum cylinder, complete according to drawings. [1.7]; Unskilled Labor [80 h]; Plumber [80 h] | 12,984.6 | PW | CON |  |
| CO-PW-TF-100 |  | Final Finishes works and Covers for Valves and Valve Chambers of Potable Water Network | 10d | 2026-12-15 | 2026-12-27 | CO-PW-VC-220, ENG-MT-PW-TF-A-100, PRO-PW-1DL-130, PRO-R25-PW-DL-130, CO-PW-TF-110, CO-PW-TF-120 | 0d |  | Wash out chamber (2500x 2500mm) [0.2]; Air valve chamber (1000x 1000 mm) [0.1]; Unskilled Labor [80 h]; Mason [80 h]; JCB [80 h] | 4,020 | PW | CON |  |

| ID | WBS | Activity | Duration | Start | Finish | Predecessors | Total float | Free float | Resources | Cost | 01- Network | 08 Stage | Activity ID N |
| --- | --- | --- | --- | --- | --- | --- | --- | --- | --- | --- | --- | --- | --- |
|  | 13 | **Irrigation Network** |  | 2026-12-08 | 2026-12-27 |  |  |  |  |  |  |  |  |
|  | TF | **Testing and Finishes** |  | 2026-12-08 | 2026-12-27 |  |  |  |  |  |  |  |  |
| CO-IR-TF-160 |  | Final Testing (pressure tests) of Irrigation Network | 16d | 2026-12-08 | 2026-12-27 | CO-IR-ML-140 | 0d |  | pipe line O.D 32 mm PN 10, in depth 0 to 1.5 m [335]; pipe line O.D 40 mm PN 10, in depth 0 to 1.5 m [185]; pipe line O.D 50 mm PN 10, in depth 0 to 1.5 m [25]; Unskilled Labor [256 h]; Plumber [256 h]; Water Tanker [256 h] | 12,944.4 | IR | CON |  |
|  | 1 | **Treated Sewage Effluent (Tse)** |  | 2026-12-08 | 2026-12-27 |  |  |  |  |  |  |  |  |
|  | TF | **Testing and Finishes** |  | 2026-12-08 | 2026-12-27 |  |  |  |  |  |  |  |  |
| CO-TSE-TF-170 |  | Final Testing (pressure tests) of Treated Sewage Effluent (Tse) | 16d | 2026-12-08 | 2026-12-27 | CO-TSE-ML-190 | 0d |  | Depth Between 0m to 1.50m [1]; Depth Between 1.50m to 2.50m [0.5]; Depth > 2.50m [0.2]; Depth Between 0m to 1.50m [92]; Depth Between 0m to 1.50m [7]; Depth Between 1.50m to 2.50m [4.5]; Depth > 2.50m [1]; Depth Between 0m to 1.50m [85]; Depth Between 1.50m to 2.50m [26]; Depth > 2.50m [2.5]; Depth Between 0m to 1.50m [6]; Depth Between 1.50m to 2.50m [4]; Depth > 2.50m [0.8]; Unskilled Labor [128 h]; Plumber [128 h]; Water Tanker [128 h] | 20,564.71 | TSE | CON |  |
|  | 14 | **Medium Voltage Network** |  | 2026-11-24 | 2026-12-15 |  |  |  |  |  |  |  |  |
|  | TT | **Termination and Testing Works** |  | 2026-11-24 | 2026-12-15 |  |  |  |  |  |  |  |  |
| CO-MV-TF-220 |  | Termination Works of Medium Voltage Network | 18d | 2026-11-24 | 2026-12-15 | CO-MV-ML-270, ENG-MT-MV-TF-A-100, PRO-MV-DL-110 | 10d | 0d | Duct bank for (33) cables [12.6]; Duct bank for (21) cables [20]; Duct bank for (15) cables [6.01]; HV Cable Road Crossing [6.42]; Unskilled Labor [144 h]; Electrical Technician [288 h] | 44,542.79 | MV | CON |  |
|  | 12 | **Street Lighting Network** |  | 2026-11-30 | 2026-12-23 |  |  |  |  |  |  |  |  |
|  | TR | **Termination and Testing Works** |  | 2026-11-30 | 2026-12-23 |  |  |  |  |  |  |  |  |
| CO-SL-LP-330 |  | Installation Works for Lighting Fixtures With Drop Wire of Street Lighting Network | 9d | 2026-11-30 | 2026-12-10 | CO-SL-DB-270, CO-SL-LP-210, ENG-MT-SL-A-120, PRO-R25-SL-DL-140 | 19d | 0d | Street Lighting( LED) Luminaire of Output ? 20,965 lumen complete with control gear and lamp, (129.1) WATT. [111]; Unskilled Labor [72 h]; Electrical Technician [144 h] | 44,175.78 | SL | CON |  |
| CO-SL-TF-200 |  | Testing Works for Lighting Poles of Street Lighting Network | 5d | 2026-12-14 | 2026-12-20 | CO-SL-DB-270, CO-SL-LP-330, CO-SL-ES-230, PRO-R25-SL-DL-130 | 22d |  | Lighting poles with 1 arm, height of (12) meters, including the power distribution box, cables, and RCC foundation. [3.9]; Lighting poles with 2 arms, height of (12) meters, including the power distribution box, cables, and RCC foundation. [3.6]; Unskilled Labor [80 h]; Electrical Technician [160 h] | 20,069.85 | SL | CON | CO-R26.S11-SL-200 |
| CO-SL-TF-220 |  | Termination Works For Lighting Poles Cables of Street Lighting Network | 8d | 2026-12-14 | 2026-12-23 | CO-SL-DB-270, CO-SL-LP-330, CO-SL-ES-230 | 19d | 0d | Lighting poles with 1 arm, height of (12) meters, including the power distribution box, cables, and RCC foundation. [3.9]; Lighting poles with 2 arms, height of (12) meters, including the power distribution box, cables, and RCC foundation. [3.6]; Unskilled Labor [64 h]; Electrical Technician [128 h] | 20,069.85 | SL | CON |  |
| CO-SL-TF-230 |  | Termination Works For Panel Board Cables of Street Lighting Network | 8d | 2026-12-14 | 2026-12-23 | CO-SL-DB-270, CO-SL-LP-330, CO-SL-ES-230, PRO-R25-SL-DL-170, CO-SL-DB-220, PRO-SPS-LL-MSI-10 | 19d | 0d | Street Lighting panels LCP (01) [0.1]; Unskilled Labor [64 h]; Electrical Technician [128 h] | 1,605.39 | SL | CON |  |
| CO-SL-TF-380 |  | Testing Works For Panel Board Cables of Street Lighting Network | 2d | 2026-12-14 | 2026-12-16 | CO-SL-DB-270, CO-SL-LP-330, CO-SL-ES-230 | 25d |  | Street Lighting panels LCP (01) [0.1]; Unskilled Labor [48 h]; Electrical Technician [96 h] | 1,605.39 | SL | CON | CO-R25-SL-TF-380 |
|  | ES | **Earthing System Works** |  | 2026-11-30 | 2026-12-14 |  |  |  |  |  |  |  |  |
| CO-SL-ES-220 |  | Install Earthing System Works for Lighting Poles of Street Lighting Network | 12d | 2026-11-30 | 2026-12-14 | CO-SL-LP-330 SS, ENG-MT-SL-ES-A-100, PRO-R25-SL-DL-150 | 19d | 0d | Including earthing of lighting poles, masts, feeder pillars, unit substations and LV feeders. [52.5]; Unskilled Labor [96 h]; Electrical Technician [192 h] | 6,120.45 | SL | CON |  |
| CO-SL-ES-230 |  | Install Earthing System Works for Lighting Panel Boards of Street Lighting Network | 12d | 2026-11-30 | 2026-12-14 | CO-SL-ES-220 SS | 19d | 0d | Including earthing of lighting poles, masts, feeder pillars, unit substations and LV feeders. [22.5]; Unskilled Labor [96 h]; Electrical Technician [192 h] | 2,623.05 | SL | CON |  |
|  | 3 | **Telecom Network** |  | 2026-12-05 | 2026-12-23 |  |  |  |  |  |  |  |  |
|  | 1 | **Testing and Finishes** |  | 2026-12-05 | 2026-12-23 |  |  |  |  |  |  |  |  |
| CO-TE-CTV-TF-110 |  | Smart Card Printer | 4d | 2026-12-05 | 2026-12-09 | CO-TE-CTV-130 | 19d | 0d | Smart Card Printer [1]; Unskilled Labor [32 h]; Electrical Technician [64 h] | 6,247.08 | TE | CON |  |
| CO-TE-CTV-TF-120 |  | Card Issue Work Station | 4d | 2026-12-09 | 2026-12-14 | CO-TE-CTV-TF-110 | 19d | 0d | Card Issue Work Station [1]; Unskilled Labor [32 h]; Electrical Technician [64 h] | 9,995.06 | TE | CON |  |
| CO-TE-CTV-TF-130 |  | Photographic Camera with stand | 4d | 2026-12-14 | 2026-12-19 | CO-TE-CTV-TF-120 | 19d | 0d | Photographic Camera with stand [1]; Unskilled Labor [32 h]; Electrical Technician [64 h] | 7,496.63 | TE | CON |  |
| CO-TE-CTV-TF-140 |  | Interface modules with CCTV, Fire and other systems | 4d | 2026-12-19 | 2026-12-23 | CO-TE-CTV-TF-130, PRO-LS-LL-MSI-20, PRO-TSE-LL-MSI-30 | 19d | 0d | Interface modules with CCTV, Fire and other systems [1]; Unskilled Labor [32 h]; Electrical Technician [64 h] | 31,733.21 | TE | CON |  |

| ID | WBS | Activity | Duration | Start | Finish | Predecessors | Total float | Free float | Resources | Cost | 01- Network | 08 Stage |
| --- | --- | --- | --- | --- | --- | --- | --- | --- | --- | --- | --- | --- |
|  | 2 | **Road Works** |  | 2026-11-24 | 2026-12-23 |  |  |  |  |  |  |  |
|  | 3 | **ST+1000:ST+1531** |  | 2026-11-29 | 2026-12-23 |  |  |  |  |  |  |  |
|  | 1 | **Bituminous Construction** |  | 2026-12-10 | 2026-12-16 |  |  |  |  |  |  |  |
| CO-RD-B-150 |  | Application of Prime Coat Layer for Road Works | 2d | 2026-12-10 | 2026-12-13 | CO-RD-PV-160, PRO-R25-RD-DL-160 | 36d | 0d | Bituminous base course (Grading I - Class A), including Prime Coat (MC1) [172.9]; Skilled Labor [16 h]; Unskilled Labor [16 h]; MC1 Sprinkler [16 h] | 70,895.92 | RD | CON |
| CO-RD-B-160 |  | Bituminous Base Courses Layers for Road Works- | 3d | 2026-12-13 | 2026-12-16 | CO-RD-B-150, PRO-R25-RD-DL-170 | 36d | 0d | Bituminous concrete wearing course, (Grading I - Class A), including tack coat (RC2) [172.9]; Bob Cat [24 h]; Dump Truck [24 h]; Compactor [24 h]; Asphalt Paver [24 h] | 71,590.97 | RD | CON |
|  | LS | **Pavement Works** |  | 2026-11-29 | 2026-12-16 |  |  |  |  |  |  |  |
| CO-RD-PV-160 |  | Fixing of Curbstone for Sidewalks Pavement | 10d | 2026-11-29 | 2026-12-10 | CO-RD-PB-140, PRO-R25-RD-DL-130 | 36d | 0d | Precast Concrete Curbstone 150X300X900 Type (K1-A) [2543.45]; Precast Concrete Curbstone 100X200X500 Type (K4) [1973.3]; Precast Concrete Curbstone 150X300X500 Type (K1-B) [773.5]; Precast Concrete Curbstone Type (K1-C) [34.65]; Flush Kerb Type (D) [65.8]; Unskilled Labor [160 h]; Mason [160 h]; JCB [160 h]; Compactor [160 h]; Forklift [160 h] | 173,364.91 | RD | CON |
| CO-RD-PV-170 |  | Fixing of Interlock Tiles for Sidewalks Pavement | 10d | 2026-12-05 | 2026-12-16 | CO-RD-PV-160 SS+5d, PRO-R25-RD-DL-120 | 36d | 0d | 60mm thick [9774.1]; 80mm thick [13648.9]; Unskilled Labor [160 h]; Mason [160 h]; JCB [160 h]; Compactor [160 h]; Forklift [160 h] | 1,236,949.1 | RD | CON |
|  | TS | **Traffic Signs Boards and Roads Marking** |  | 2026-12-16 | 2026-12-23 |  |  |  |  |  |  |  |
| CO-RD-F-RM-180 |  | Application of Road Marking Works For Road Works | 2d | 2026-12-16 | 2026-12-19 | CO-RD-B-160, CO-RD-PV-170, PRO-R25-RD-DL-150 | 36d | 0d | Retroreflective Thermoplastic White Traffic lines [337.75]; Retroreflective Thermoplastic Yellow, Traffic lines [505.75]; Road Marking Machine [32 h] | 23,736.09 | RD | CON |
| CO-RD-F-TS-120 |  | Installation Works of Traffic Signs Boards For Road Works | 4d | 2026-12-19 | 2026-12-23 | CO-RD-F-RM-180, PRO-R25-RD-DL-140 | 36d | 0d | Traffic signs, ground mounted, Sheet Aluminum, (breakaway) Single post IPE, with all accessories [34.65]; Precast Concrete Blister Warning Tactile Paver Brown Finish 300*300*60mm [22.4]; Skilled Labor [64 h]; Unskilled Labor [64 h] | 24,988.32 | RD | CON |
|  | 1 | **ST+500:ST+1000** |  | 2026-11-24 | 2026-12-23 |  |  |  |  |  |  |  |
|  | 1 | **Bituminous Construction** |  | 2026-12-07 | 2026-12-14 |  |  |  |  |  |  |  |
| CO-RD-B-130 |  | Application of Prime Coat Layer for Road Works | 2d | 2026-12-07 | 2026-12-09 | CO-RD-PV-140, CO-RD-PB-130 | 36d | 0d | Bituminous base course (Grading I - Class A), including Prime Coat (MC1) [172.9]; Skilled Labor [16 h]; Unskilled Labor [16 h]; MC1 Sprinkler [16 h] | 70,895.92 | RD | CON |
| CO-RD-B-140 |  | Bituminous Base Courses Layers for Road Works- | 4d | 2026-12-09 | 2026-12-14 | CO-RD-B-130 | 36d | 0d | Bituminous concrete wearing course, (Grading I - Class A), including tack coat (RC2) [172.9]; Bob Cat [32 h]; Dump Truck [32 h]; Compactor [32 h]; Asphalt Paver [32 h] | 71,590.97 | RD | CON |
|  | LS | **Pavement Works** |  | 2026-11-24 | 2026-12-13 |  |  |  |  |  |  |  |
| CO-RD-PV-140 |  | Fixing of Curbstone for Sidewalks Pavement | 11d | 2026-11-24 | 2026-12-07 | CO-RD-PB-120 | 36d | 0d | Precast Concrete Curbstone 150X300X900 Type (K1-A) [2543.45]; Precast Concrete Curbstone 100X200X500 Type (K4) [1973.3]; Precast Concrete Curbstone 150X300X500 Type (K1-B) [773.5]; Precast Concrete Curbstone Type (K1-C) [34.65]; Flush Kerb Type (D) [65.8]; Unskilled Labor [176 h]; Mason [176 h]; JCB [176 h]; Compactor [176 h]; Forklift [176 h] | 173,364.91 | RD | CON |
| CO-RD-PV-150 |  | Fixing of Interlock Tiles for Sidewalks Pavement | 11d | 2026-11-30 | 2026-12-13 | CO-RD-PV-140 SS+5d | 37d | 1d | 60mm thick [9774.1]; 80mm thick [13648.9]; Unskilled Labor [176 h]; Mason [176 h]; JCB [176 h]; Compactor [176 h]; Forklift [176 h] | 1,236,949.1 | RD | CON |
|  | TS | **Traffic Signs Boards and Roads Marking** |  | 2026-12-14 | 2026-12-23 |  |  |  |  |  |  |  |
| CO-RD-F-RM-170 |  | Application of Road Marking Works For Road Works | 4d | 2026-12-14 | 2026-12-19 | CO-RD-B-140, CO-RD-PV-150 | 36d | 0d | Retroreflective Thermoplastic White Traffic lines [337.75]; Retroreflective Thermoplastic Yellow, Traffic lines [505.75]; Road Marking Machine [64 h] | 23,736.09 | RD | CON |
| CO-RD-F-TS-110 |  | Installation Works of Traffic Signs Boards For Road Works | 4d | 2026-12-19 | 2026-12-23 | CO-RD-F-RM-170 | 36d | 0d | Traffic signs, ground mounted, Sheet Aluminum, (breakaway) Single post IPE, with all accessories [34.65]; Precast Concrete Blister Warning Tactile Paver Brown Finish 300*300*60mm [22.4]; Skilled Labor [64 h]; Unskilled Labor [64 h] | 24,988.32 | RD | CON |
|  | 2 | **ST+01:ST+500** |  | 2026-12-02 | 2026-12-23 |  |  |  |  |  |  |  |
|  | 1 | **Bituminous Construction** |  | 2026-12-13 | 2026-12-19 |  |  |  |  |  |  |  |
| CO-RD-B-110 |  | Application of Prime Coat Layer for Road Works | 2d | 2026-12-13 | 2026-12-15 | CO-RD-PV-120, CO-RD-PB-110 | 40d | 0d | Bituminous base course (Grading I - Class A), including Prime Coat (MC1) [148.2]; Skilled Labor [16 h]; Unskilled Labor [16 h]; MC1 Sprinkler [16 h] | 60,767.93 | RD | CON |
| CO-RD-B-120 |  | Bituminous Base Courses Layers for Road Works- | 3d | 2026-12-15 | 2026-12-19 | CO-RD-B-110 | 40d | 0d | Bituminous concrete wearing course, (Grading I - Class A), including tack coat (RC2) [148.2]; Bob Cat [24 h]; Dump Truck [24 h]; Compactor [24 h]; Asphalt Paver [24 h] | 61,363.69 | RD | CON |

| ID | WBS | Activity | Duration | Start | Finish | Predecessors | Total float | Free float | Resources | Cost | 01- Network | 08 Stage | 13 BUILDINGS |
| --- | --- | --- | --- | --- | --- | --- | --- | --- | --- | --- | --- | --- | --- |
|  | LS | **Pavement Works** |  | 2026-12-02 | 2026-12-17 |  |  |  |  |  |  |  |  |
| CO-RD-PV-120 |  | Fixing of Curbstone for Sidewalks Pavement | 8d | 2026-12-02 | 2026-12-12 | CO-RD-PB-100, CO-RD-PB-100 FF | 41d | 0d | Precast Concrete Curbstone 150X300X900 Type (K1-A) [2180.1]; Precast Concrete Curbstone 100X200X500 Type (K4) [1691.4]; Precast Concrete Curbstone 150X300X500 Type (K1-B) [663]; Precast Concrete Curbstone Type (K1-C) [29.7]; Flush Kerb Type (D) [56.4]; Unskilled Labor [160 h]; Mason [160 h]; JCB [160 h]; Compactor [160 h]; Forklift [160 h] | 148,598.5 | RD | CON |  |
| CO-RD-PV-130 |  | Fixing of Interlock Tiles for Sidewalks Pavement | 8d | 2026-12-08 | 2026-12-17 | CO-RD-PV-120 SS+5d | 41d | 1d | 60mm thick [8377.8]; 80mm thick [11699]; Unskilled Labor [160 h]; Mason [160 h]; JCB [160 h]; Compactor [160 h]; Forklift [160 h] | 1,060,242.09 | RD | CON |  |
|  | TS | **Traffic Signs Boards and Roads Marking** |  | 2026-12-19 | 2026-12-23 |  |  |  |  |  |  |  |  |
| CO-RD-F-RM-160 |  | Application of Road Marking Works For Road Works | 4d | 2026-12-19 | 2026-12-23 | CO-RD-B-120, CO-RD-PV-130 | 49.75d | 0d | Retroreflective Thermoplastic White Traffic lines [289.5]; Retroreflective Thermoplastic Yellow, Traffic lines [433.5]; Road Marking Machine [48 h] | 20,345.22 | RD | CON |  |
| CO-RD-F-TS-100 |  | Installation Works of Traffic Signs Boards For Road Works | 4d | 2026-12-19 | 2026-12-23 | CO-RD-F-RM-160 SS | 49.75d | 0d | Traffic signs, ground mounted, Sheet Aluminum, (breakaway) Single post IPE, with all accessories [29.7]; Precast Concrete Blister Warning Tactile Paver Brown Finish 300*300*60mm [19.2]; Skilled Labor [48 h]; Unskilled Labor [48 h] | 21,418.56 | RD | CON |  |
|  | GEN | **Superstructure Work** |  | 2026-04-21 | 2027-02-22 |  |  |  |  |  |  |  |  |
|  | 4 | **Utility Buildings** |  | 2026-05-02 | 2026-12-23 |  |  |  |  |  |  |  |  |
|  | 6 | **Storm Drainage Ponds** |  | 2026-08-03 | 2026-11-10 |  |  |  |  |  |  |  |  |
| CO-SD-PO-100-P1 |  | Excavation & Filling Works - PART 1 | 21d | 2026-08-03 | 2026-08-27 | ENG-SH-DPO-A-120, ENG-MT-DPO-CV-A-110, PRO-DPO-CV-1DL-10, CO-SD-CB-200 SS, PRO-DPO-CV-DL-10 FF | 10d | 0d | Skilled Labor [168 h]; Unskilled Labor [336 h]; Excavator [168 h] |  |  | CON |  |
| CO-SD-PO-110-P1 |  | Finished Grouted Riprap - PART 1 | 21d | 2026-08-27 | 2026-09-21 | CO-SD-PO-100-P1 | 10d | 0d | Finished grouted riprap for Pond 300mm as per drawings [2046]; Unskilled Labor [336 h]; Mason [336 h] | 164,498.4 | SD | CON |  |
| CO-SD-PO-100-P2 |  | Excavation & Filling Works - PART 2 | 21d | 2026-09-21 | 2026-10-17 | CO-SD-PO-100-P1, CO-SD-PO-110-P1 | 10d | 0d | Unskilled Labor [336 h]; Excavator [168 h] |  |  | CON |  |
| CO-SD-PO-110-P2 |  | Finished Grouted Riprap - PART 2 | 21d | 2026-10-17 | 2026-11-10 | CO-SD-PO-100-P2, CO-SD-PO-110-P1 | 10d | 0d | Finished grouted riprap for Pond 300mm as per drawings [1674]; Unskilled Labor [336 h]; Mason [336 h] | 134,589.6 | SD | CON |  |
|  | 4 | **Pump Station** |  | 2026-05-02 | 2026-12-20 |  |  |  |  |  |  |  |  |
|  | 1 | **Civil work** |  | 2026-05-02 | 2026-08-13 |  |  |  |  |  |  |  |  |
|  | 1 | **Sup Structure** |  | 2026-05-02 | 2026-06-15 |  |  |  |  |  |  |  |  |
| CO-UB-PS-100 |  | Excavation Work for for Pump station building | 10d | 2026-05-02 | 2026-05-13 | ENG-SH-SPS-A-160, PRO-SPS-CV-1DL-10, PRO-SPS-CV-DL-10 FF, PRO-SPS-CV-DL-10 | 5.25d | 0d | Price; Skilled Labor [80 h]; Unskilled Labor [160 h]; Excavator [80 h] |  | UB | CON | PUMP |
| CO-UB-PS-110 |  | pouring P.C Conceret for Pump station building | 3d | 2026-05-13 | 2026-05-17 | CO-UB-PS-100 | 5.25d | 0d | Price [48286.3 SAR]; Unskilled Labor [24 h]; Mason [24 h] | 48,286.32 | UB | CON |  |
| CO-UB-PS-120 |  | Formwork for Foundation for Pump station building | 7d | 2026-05-17 | 2026-05-25 | CO-UB-PS-110 | 5.25d | 0d | Price [48286.3 SAR]; Unskilled Labor [56 h]; Carpenter [112 h] | 48,286.32 | UB | CON |  |
| CO-UB-PS-130 |  | Steel fixing for Foundation for Pump station building | 5d | 2026-05-25 | 2026-06-04 | CO-UB-PS-120 | 5.25d | 0d | Price [48286.3 SAR]; Unskilled Labor [40 h]; Steel Fixer [120 h] | 48,286.32 | UB | CON |  |
| CO-UB-PS-140 |  | pouring for Foundation for Pump station building | 1d | 2026-06-04 | 2026-06-06 | CO-UB-PS-130 | 5.25d | 0d | Price [48286.3 SAR]; Unskilled Labor [8 h]; Mason [8 h] | 48,286.32 | UB | CON |  |
| CO-UB-PS-150 |  | curing and deshuttering formwork Pump station building | 3d | 2026-06-06 | 2026-06-09 | CO-UB-PS-140 | 5.25d | 0d | Price [48286.3 SAR]; Unskilled Labor [72 h]; Carpenter [48 h] | 48,286.32 | UB | CON |  |
| CO-UB-PS-160 |  | Backfilling and compaction work for pump station | 5d | 2026-06-09 | 2026-06-15 | CO-UB-PS-150 | 5.25d | 0d | Price [48286.3 SAR]; Skilled Labor [40 h]; Unskilled Labor [80 h]; Excavator [40 h] | 48,286.32 | UB | CON |  |
|  | 2 | **Super structure** |  | 2026-06-15 | 2026-08-13 |  |  |  |  |  |  |  |  |
| CO-UB-PS-170 |  | Formwork for Wall and columns for Pump station building | 12d | 2026-06-15 | 2026-06-29 | CO-UB-PS-160 | 5.25d | 0d | Price [48286.3 SAR]; Unskilled Labor [96 h]; Carpenter [192 h] | 48,286.32 | UB | CON |  |
| CO-UB-PS-180 |  | Steel fixing for Wall columns | 7d | 2026-06-29 | 2026-07-07 | CO-UB-PS-170 | 5.25d | 0d | Price [48286.3 SAR]; Unskilled Labor [56 h]; Steel Fixer [168 h] | 48,286.32 | UB | CON |  |
| CO-UB-PS-190 |  | pouring for Wall columns | 1d | 2026-07-07 | 2026-07-08 | CO-UB-PS-180 | 5.25d | 0d | Price [48286.3 SAR]; Unskilled Labor [8 h]; Mason [8 h] | 48,286.32 | UB | CON |  |
| CO-UB-PS-200 |  | curing and deshuttering formwork for Wall columns | 2d | 2026-07-08 | 2026-07-11 | CO-UB-PS-190 | 5.25d | 0d | Price [48286.3 SAR]; Unskilled Labor [48 h]; Carpenter [32 h] | 48,286.32 | UB | CON |  |
| CO-UB-PS-210 |  | Waterproofing for Walls columns | 4.75d | 2026-07-11 | 2026-07-15 | CO-UB-PS-200 | 5.25d | 0d | Price [48286.3 SAR]; Unskilled Labor [40 h]; Mason [40 h] | 48,286.32 | UB | CON |  |
| CO-UB-PS-220 |  | Formwork for pump roof | 12d | 2026-07-16 | 2026-07-29 | CO-UB-PS-210 | 5.25d | 0d | Price [48286.3 SAR]; Unskilled Labor [96 h]; Carpenter [192 h] | 48,286.32 | UB | CON |  |
| CO-UB-PS-230 |  | Steel fixing for pump roof | 10d | 2026-07-30 | 2026-08-10 | CO-UB-PS-220 | 5.25d | 0d | Price [48286.3 SAR]; Unskilled Labor [80 h]; Steel Fixer [240 h] | 48,286.32 | UB | CON |  |
| CO-UB-PS-240 |  | pouring for pump roof | 1d | 2026-08-11 | 2026-08-11 | CO-UB-PS-230 | 5.25d | 0d | Price [48286.3 SAR]; Unskilled Labor [8 h]; Mason [8 h] | 48,286.32 | UB | CON |  |
| CO-UB-PS-250 |  | curing and deshuttering formwork for pump roof | 2d | 2026-08-12 | 2026-08-13 | CO-UB-PS-240 | 5.25d | 0d | Price [48286.3 SAR]; Unskilled Labor [48 h]; Carpenter [32 h] | 48,286.32 | UB | CON |  |

| ID | WBS | Activity | Duration | Start | Finish | Predecessors | Total float | Free float | Resources | Cost | 01- Network | 08 Stage | 13 BUILDINGS |
| --- | --- | --- | --- | --- | --- | --- | --- | --- | --- | --- | --- | --- | --- |
|  | 2 | **Architectural work** |  | 2026-08-15 | 2026-11-10 |  |  |  |  |  |  |  |  |
| CO-UB-PS-260 |  | Executing Masonry Works for Pump station building | 12d | 2026-08-15 | 2026-08-27 | CO-UB-PS-250 | 5.25d | 0d | Price [123130 SAR]; Unskilled Labor [192 h]; Mason [192 h] | 123,130.13 | UB | CON |  |
| CO-UB-PS-270 |  | Executing Plastering Works for Pump station building | 14d | 2026-08-29 | 2026-09-13 | CO-UB-PS-260 | 5.25d | 0d | Price [153913 SAR]; Unskilled Labor [112 h]; Mason [112 h] | 153,912.67 | UB | CON |  |
| CO-UB-PS-280 |  | Executing Painting Works for Pump station building | 14d | 2026-09-14 | 2026-09-30 | CO-UB-PS-270 | 5.25d | 0d | Price [152238 SAR]; Skilled Labor [224 h]; Unskilled Labor [224 h] | 152,237.8 | UB | CON |  |
| CO-UB-PS-320 |  | Doors and windows Fixing &Stair Tiles | 7d | 2026-11-03 | 2026-11-10 | CO-UB-PS-280, CO-UB-PS-310 | 16.25d | 11d | Price [153913 SAR]; Unskilled Labor [56 h]; Carpenter [112 h] | 153,912.67 | UB | CON |  |
|  | 3 | **Electrical work** |  | 2026-10-01 | 2026-12-01 |  |  |  |  |  |  |  |  |
| CO-UB-PS-290 |  | Lighting system for pump house | 12d | 2026-10-01 | 2026-10-14 | CO-UB-PS-280 | 5.25d | 0d | Price [90536.9 SAR]; Unskilled Labor [96 h]; Electrical Technician [192 h] | 90,536.87 | UB | CON |  |
| CO-UB-PS-300 |  | Wiring connection for pump house | 9d | 2026-10-15 | 2026-10-25 | CO-UB-PS-290 | 5.25d | 0d | Price [36214.8 SAR]; Unskilled Labor [72 h]; Electrical Technician [144 h] | 36,214.75 | UB | CON |  |
| CO-UB-PS-310 |  | Sockets and switches for pump house | 7d | 2026-10-26 | 2026-11-02 | CO-UB-PS-300 | 5.25d | 0d | Price [54322.1 SAR]; Unskilled Labor [56 h]; Electrical Technician [112 h] | 54,322.12 | UB | CON |  |
| CO-UB-PS-330 |  | Installation for Distribution boards for pump house | 12d | 2026-11-03 | 2026-11-16 | CO-UB-PS-310 | 7.25d | 0d | Price [90536.9 SAR]; Unskilled Labor [96 h]; Electrical Technician [192 h] | 90,536.87 | UB | CON |  |
| CO-UB-PS-370 |  | Executing Earthing and bonding for the entire system | 13d | 2026-11-17 | 2026-12-01 | CO-UB-PS-330 | 7.25d | 2d | Price [90536.9 SAR]; Unskilled Labor [104 h]; Electrical Technician [208 h] | 90,536.87 | UB | CON |  |
|  | 4 | **Mechanical work** |  | 2026-11-03 | 2026-12-20 |  |  |  |  |  |  |  |  |
| CO-UB-PS-340 |  | Executing HVAC System for Pump station building | 14d | 2026-11-03 | 2026-11-18 | CO-UB-PS-270, CO-UB-PS-310 | 18.25d | 13d | Price [108644 SAR]; Unskilled Labor [112 h]; Electrical Technician [224 h] | 108,644.24 | UB | CON |  |
| CO-UB-PS-350 |  | Executing Fire Alarm System for Pump station building | 9d | 2026-11-03 | 2026-11-12 | CO-UB-PS-270, CO-UB-PS-310 | 5.25d | 0d | Price [217288 SAR]; Unskilled Labor [72 h]; Electrical Technician [144 h] | 217,288.47 | UB | CON |  |
| CO-UB-PS-360 |  | Executing Fire fighting institution works(piping and wire installation) for Pump station building | 9d | 2026-11-14 | 2026-11-23 | CO-UB-PS-350 | 5.25d | 0d | Price [271611 SAR]; Unskilled Labor [72 h]; Electrical Technician [144 h] | 271,610.6 | UB | CON |  |
| CO-UB-PS-380 |  | Executing Fire fighting finishing works for Pump station building | 9d | 2026-11-24 | 2026-12-03 | CO-UB-PS-360, CO-UB-PS-320 | 5.25d | 0d | Price [108644 SAR]; Unskilled Labor [72 h]; Electrical Technician [144 h] | 108,644.24 | UB | CON |  |
| CO-UB-PS-390 |  | Installation of pumps | 14d | 2026-12-05 | 2026-12-20 | CO-UB-PS-380, CO-UB-PS-370, CO-UB-PS-340 | 5.25d |  | Price [380255 SAR]; Unskilled Labor [112 h]; Electrical Technician [224 h] | 380,254.83 | UB | CON |  |
|  | 3 | **Lift Station** |  | 2026-07-04 | 2026-12-22 |  |  |  |  |  |  |  |  |
|  | 1 | **Civil work** |  | 2026-07-04 | 2026-10-01 |  |  |  |  |  |  |  |  |
|  | 1 | **Sup Structure** |  | 2026-07-04 | 2026-08-17 |  |  |  |  |  |  |  |  |
| CO-UB-LS-220 |  | Excavation Work for for Lift Station | 9d | 2026-07-04 | 2026-07-14 | CO-UB-PS-100, ENG-SH-LS-A-170, PRO-LS-CV-1DL-40, PRO-LS-CV-DL-50 | 3.25d | 0d | Price; Skilled Labor [72 h]; Unskilled Labor [144 h]; Excavator [72 h] |  | UB | CON | PUMP |
| CO-UB-LS-230 |  | pouring P.C Conceret for Lift Station | 5d | 2026-07-14 | 2026-07-20 | CO-UB-LS-220 | 3.25d | 0d | Price [28167 SAR]; Unskilled Labor [40 h]; Mason [40 h] | 28,167.02 | UB | CON |  |
| CO-UB-LS-240 |  | Formwork for Foundation for Lift Station | 7d | 2026-07-20 | 2026-07-28 | CO-UB-LS-230 | 3.25d | 0d | Price [39433.8 SAR]; Unskilled Labor [56 h]; Carpenter [112 h] | 39,433.84 | UB | CON |  |
| CO-UB-LS-250 |  | Steel fixing for Foundation for Lift Station | 8d | 2026-07-28 | 2026-08-06 | CO-UB-LS-240 | 3.25d | 0d | Price [28167 SAR]; Unskilled Labor [64 h]; Steel Fixer [192 h] | 28,167.02 | UB | CON |  |
| CO-UB-LS-260 |  | pouring for Foundation for Lift Station | 1d | 2026-08-06 | 2026-08-08 | CO-UB-LS-250 | 3.25d | 0d | Price [33800.4 SAR]; Unskilled Labor [8 h]; Mason [8 h] | 33,800.43 | UB | CON |  |
| CO-UB-LS-270 |  | curing and deshuttering formwork Lift Station | 2d | 2026-08-08 | 2026-08-10 | CO-UB-LS-260 | 3.25d | 0d | Price [5633.41 SAR]; Unskilled Labor [48 h]; Carpenter [32 h] | 5,633.41 | UB | CON |  |
| CO-UB-LS-280 |  | Backfilling and compaction work for pump station | 6d | 2026-08-10 | 2026-08-17 | CO-UB-LS-270 | 3.25d | 0d | Price [56334.1 SAR]; Skilled Labor [48 h]; Unskilled Labor [96 h]; Excavator [48 h] | 56,334.05 | UB | CON |  |

| ID | WBS | Activity | Duration | Start | Finish | Predecessors | Total float | Free float | Resources | Cost | 01- Network | 08 Stage |
| --- | --- | --- | --- | --- | --- | --- | --- | --- | --- | --- | --- | --- |
|  | 2 | **Super structure** |  | 2026-08-17 | 2026-10-01 |  |  |  |  |  |  |  |
| CO-UB-LS-290 |  | Formwork for Wall and columns for Lift Station | 7d | 2026-08-17 | 2026-08-25 | CO-UB-LS-280 | 3.25d | 0d | Price [56334.1 SAR]; Unskilled Labor [168 h]; Carpenter [112 h] | 56,334.05 | UB | CON |
| CO-UB-LS-300 |  | Steel fixing for Wall columns | 9d | 2026-08-25 | 2026-09-05 | CO-UB-LS-290 | 3.25d | 0d | Price [56334.1 SAR]; Unskilled Labor [72 h]; Steel Fixer [216 h] | 56,334.05 | UB | CON |
| CO-UB-LS-310 |  | pouring for Wall columns | 1d | 2026-09-05 | 2026-09-06 | CO-UB-LS-300 | 3.25d | 0d | Price [33800.4 SAR]; Unskilled Labor [8 h]; Mason [8 h] | 33,800.43 | UB | CON |
| CO-UB-LS-320 |  | curing and deshuttering formwork for Wall columns | 2d | 2026-09-06 | 2026-09-08 | CO-UB-LS-310 | 3.25d | 0d | Price [5633.41 SAR]; Unskilled Labor [48 h]; Carpenter [32 h] | 5,633.41 | UB | CON |
| CO-UB-LS-330 |  | Waterproofing for Walls columns | 4d | 2026-09-08 | 2026-09-13 | CO-UB-LS-320 | 3.25d | 0d | Price [56334.1 SAR]; Unskilled Labor [32 h]; Mason [32 h] | 56,334.05 | UB | CON |
| CO-UB-LS-340 |  | Formwork for pump roof | 5d | 2026-09-13 | 2026-09-19 | CO-UB-LS-330 | 3.25d | 0d | Price [56334.1 SAR]; Unskilled Labor [120 h]; Carpenter [80 h] | 56,334.05 | UB | CON |
| CO-UB-LS-350 |  | Steel fixing for pump roof | 6d | 2026-09-19 | 2026-09-27 | CO-UB-LS-340 | 3.25d | 0d | Price [56334.1 SAR]; Unskilled Labor [48 h]; Steel Fixer [144 h] | 56,334.05 | UB | CON |
| CO-UB-LS-360 |  | pouring for pump roof | 1d | 2026-09-27 | 2026-09-28 | CO-UB-LS-350 | 3.25d | 0d | Price [45067.2 SAR]; Unskilled Labor [8 h]; Mason [8 h] | 45,067.24 | UB | CON |
| CO-UB-LS-370 |  | curing and deshuttering formwork for pump roof | 3d | 2026-09-28 | 2026-10-01 | CO-UB-LS-360 | 3.25d | 0d | Price [5633.41 SAR]; Unskilled Labor [72 h]; Carpenter [48 h] | 5,633.41 | UB | CON |
|  | 2 | **Architectural work** |  | 2026-10-01 | 2026-11-01 |  |  |  |  |  |  |  |
| CO-UB-LS-380 |  | Executing Masonry Works for Pump station building | 12d | 2026-10-01 | 2026-10-15 | CO-UB-LS-370 | 3.25d | 0d | Price [239420 SAR]; Unskilled Labor [192 h]; Mason [192 h] | 239,419.71 | UB | CON |
| CO-UB-LS-390 |  | Executing Plastering Works for Pump station building | 14d | 2026-10-15 | 2026-11-01 | CO-UB-LS-380 | 3.25d | 0d | Price [239420 SAR]; Unskilled Labor [112 h]; Mason [112 h] | 239,419.71 | UB | CON |
|  | 3 | **Electrical work** |  | 2026-11-01 | 2026-12-22 |  |  |  |  |  |  |  |
| CO-UB-LS-400 |  | Lighting system for pump house | 11d | 2026-11-01 | 2026-11-14 | CO-UB-LS-390 | 3.25d | 0d | Price [98584.6 SAR]; Unskilled Labor [88 h]; Electrical Technician [176 h] | 98,584.59 | UB | CON |
| CO-UB-LS-420 |  | Wiring connection for pump house | 9d | 2026-11-14 | 2026-11-24 | CO-UB-LS-400 | 3.25d | 0d | Price [56334.1 SAR]; Unskilled Labor [72 h]; Electrical Technician [144 h] | 56,334.05 | UB | CON |
| CO-UB-LS-440 |  | Sockets and switches for pump house | 8d | 2026-11-24 | 2026-12-03 | CO-UB-LS-420 | 3.25d | 0d | Price [28167 SAR]; Unskilled Labor [64 h]; Electrical Technician [128 h] | 28,167.02 | UB | CON |
| CO-UB-LS-460 |  | Installation for Distribution boards for pump house | 9d | 2026-12-03 | 2026-12-14 | CO-UB-LS-440 | 3.25d | 0d | Price [70417.6 SAR]; Unskilled Labor [72 h]; Electrical Technician [144 h] | 70,417.57 | UB | CON |
| CO-UB-LS-480 |  | Executing Earthing and bonding for the entire system | 7.75d | 2026-12-14 | 2026-12-22 | CO-UB-LS-460 | 3.25d |  | Price [28167 SAR]; Unskilled Labor [64 h]; Electrical Technician [128 h] | 28,167.02 | UB | CON |
|  | 4 | **Mechanical work** |  | 2026-11-01 | 2026-12-08 |  |  |  |  |  |  |  |
| CO-UB-LS-410 |  | Internal pipe installation | 8d | 2026-11-01 | 2026-11-10 | CO-UB-LS-390 | 16d | 0d | Price [140835 SAR]; Unskilled Labor [64 h]; Plumber [64 h] | 140,835.12 | UB | CON |
| CO-UB-LS-430 |  | Guide rails & lifting chains installation | 7d | 2026-11-10 | 2026-11-18 | CO-UB-LS-410 | 16d | 0d | Price [112668 SAR]; Unskilled Labor [56 h]; Plumber [56 h] | 112,668.1 | UB | CON |
| CO-UB-LS-450 |  | ExeValve installation | 9d | 2026-11-18 | 2026-11-29 | CO-UB-LS-430 | 16d | 0d | Price [140835 SAR]; Unskilled Labor [72 h]; Plumber [72 h] | 140,835.12 | UB | CON |
| CO-UB-LS-470 |  | Installation of pumps | 8d | 2026-11-29 | 2026-12-08 | CO-UB-LS-450 | 16d |  | Price [169002 SAR]; Unskilled Labor [64 h]; Plumber [64 h] | 169,002.15 | UB | CON |

| ID | WBS | Activity | Duration | Start | Finish | Predecessors | Total float | Free float | Resources | Cost | 01- Network | 08 Stage |
| --- | --- | --- | --- | --- | --- | --- | --- | --- | --- | --- | --- | --- |
|  | 5 | **Potable Water Tank** |  | 2026-06-06 | 2026-09-12 |  |  |  |  |  |  |  |
|  | 1 | **Eearth Work** |  | 2026-06-06 | 2026-06-20 |  |  |  |  |  |  |  |
| CO-UB-PWT-100 |  | Excavation work for tank foundation tank formation level | 7d | 2026-06-06 | 2026-06-14 | ENG-SH-ST-A-180, PRO-TSE-CV-1DL-50, PRO-TSE-CV-DL-60 | 9.75d | 0d | Glass Fused Bolted (GLS) 1500 m3 Tank with associated accessories & manufacturer recommendation for the foundation; Skilled Labor [56 h]; Unskilled Labor [112 h]; Excavator [56 h] |  | PW | CON |
| CO-UB-PWT-110 |  | Soil replacement Up to tank formation level | 5d | 2026-06-14 | 2026-06-20 | CO-UB-PWT-100 | 9.75d | 0d | Glass Fused Bolted (GLS) 1500 m3 Tank with associated accessories & manufacturer recommendation for the foundation [0.01]; Unskilled Labor [80 h]; Excavator [40 h]; Compactor [40 h] | 4,926.9 | PW | CON |
|  | 2 | **Structural Work** |  | 2026-06-20 | 2026-07-09 |  |  |  |  |  |  |  |
| CO-UB-PWT-120 |  | Plain Concrete works | 3d | 2026-06-20 | 2026-06-23 | CO-UB-PWT-110 | 9.75d | 0d | Glass Fused Bolted (GLS) 1500 m3 Tank with associated accessories & manufacturer recommendation for the foundation [0.04]; Unskilled Labor [24 h]; Mason [24 h] | 16,607.54 | PW | CON |
| CO-UB-PWT-130 |  | Form work for Tank Foundation | 6d | 2026-06-23 | 2026-06-30 | CO-UB-PWT-120 | 9.75d | 0d | Glass Fused Bolted (GLS) 1500 m3 Tank with associated accessories & manufacturer recommendation for the foundation [0.07]; Unskilled Labor [144 h]; Carpenter [96 h] | 27,679.23 | PW | CON |
| CO-UB-PWT-140 |  | Steel Reinforcement work for Tank Foundation | 7d | 2026-06-30 | 2026-07-08 | CO-UB-PWT-130 | 9.75d | 0d | Glass Fused Bolted (GLS) 1500 m3 Tank with associated accessories & manufacturer recommendation for the foundation [0.06]; Unskilled Labor [56 h]; Steel Fixer [168 h] | 25,833.95 | PW | CON |
| CO-UB-PWT-150 |  | Casting concrete for Tank Foundation | 1d | 2026-07-08 | 2026-07-09 | CO-UB-PWT-140 | 9.75d | 0d | Glass Fused Bolted (GLS) 1500 m3 Tank with associated accessories & manufacturer recommendation for the foundation [0.02]; Unskilled Labor [8 h]; Mason [8 h] | 9,226.41 | PW | CON |
|  | 3 | **Tank Shell Erection&Roof Installation** |  | 2026-07-09 | 2026-08-23 |  |  |  |  |  |  |  |
| CO-UB-PWT-160 |  | Bottom ring installation | 10d | 2026-07-09 | 2026-07-21 | CO-UB-PWT-150 | 9.75d | 0d | Glass Fused Bolted (GLS) 1500 m3 Tank with associated accessories & manufacturer recommendation for the foundation [0.13]; Skilled Labor [160 h]; Unskilled Labor [80 h] | 55,358.46 | PW | CON |
| CO-UB-PWT-170 |  | shell erection | 14d | 2026-07-21 | 2026-08-06 | CO-UB-PWT-160 | 9.75d | 0d | Glass Fused Bolted (GLS) 1500 m3 Tank with associated accessories & manufacturer recommendation for the foundation [0.18]; Skilled Labor [224 h]; Unskilled Labor [112 h] | 73,811.28 | PW | CON |
| CO-UB-PWT-180 |  | Aluminum dome / steel roof installation | 14d | 2026-08-06 | 2026-08-23 | CO-UB-PWT-170 | 9.75d | 0d | Glass Fused Bolted (GLS) 1500 m3 Tank with associated accessories & manufacturer recommendation for the foundation [0.22]; Skilled Labor [224 h]; Unskilled Labor [112 h] | 92,264.1 | PW | CON |
|  | 4 | **Mechanical Work&Accessories** |  | 2026-08-23 | 2026-09-12 |  |  |  |  |  |  |  |
| CO-UB-PWT-190 |  | Inlet / outlet piping connections | 6d | 2026-08-23 | 2026-08-30 | CO-UB-PWT-180 | 9.75d | 0d | Glass Fused Bolted (GLS) 1500 m3 Tank with associated accessories & manufacturer recommendation for the foundation [0.13]; Unskilled Labor [48 h]; Plumber [48 h] | 54,737.22 | PW | CON |
| CO-UB-PWT-200 |  | installation Valves | 6d | 2026-08-30 | 2026-09-06 | CO-UB-PWT-190 | 9.75d | 0d | Glass Fused Bolted (GLS) 1500 m3 Tank with associated accessories & manufacturer recommendation for the foundation [0.09]; Unskilled Labor [48 h]; Plumber [48 h] | 36,905.64 | PW | CON |
| CO-UB-PWT-210 |  | Ladders, platforms & handrails | 5d | 2026-09-06 | 2026-09-12 | CO-UB-PWT-200 | 9.75d | 0d | Glass Fused Bolted (GLS) 1500 m3 Tank with associated accessories & manufacturer recommendation for the foundation [0.04]; Skilled Labor [80 h]; Unskilled Labor [40 h] | 14,762.26 | PW | CON |
|  | 2 | **IrrigationTank** |  | 2026-09-12 | 2026-12-16 |  |  |  |  |  |  |  |
|  | 1 | **Eearth Work** |  | 2026-09-12 | 2026-09-27 |  |  |  |  |  |  |  |
| CO-UB-IRT-140 |  | Excavation work for tank foundation tank formation level | 7d | 2026-09-12 | 2026-09-20 | CO-UB-PWT-100, CO-UB-PWT-210 | 9.75d | 0d | Skilled Labor [56 h]; Unskilled Labor [112 h]; Excavator [56 h] |  | UB | CON |
| CO-UB-IRT-150 |  | Soil replacement Up to tank formation level | 5d | 2026-09-20 | 2026-09-27 | CO-UB-IRT-140 | 9.75d | 0d | Glass Fused Bolted (GLS) 1500 m3 Tank with associated accessories & manufacturer recommendation for the foundation [0.01]; Unskilled Labor [80 h]; Excavator [40 h]; Compactor [40 h] | 4,926.9 | UB | CON |
|  | 2 | **Structural Work** |  | 2026-09-27 | 2026-10-17 |  |  |  |  |  |  |  |
| CO-UB-IRT-160 |  | Plain Concrete works | 3d | 2026-09-27 | 2026-09-30 | CO-UB-IRT-150 | 9.75d | 0d | Glass Fused Bolted (GLS) 1500 m3 Tank with associated accessories & manufacturer recommendation for the foundation [0.04]; Unskilled Labor [24 h]; Mason [24 h] | 16,607.54 | UB | CON |
| CO-UB-IRT-170 |  | Form work for Tank Foundation | 6d | 2026-09-30 | 2026-10-07 | CO-UB-IRT-160 | 9.75d | 0d | Glass Fused Bolted (GLS) 1500 m3 Tank with associated accessories & manufacturer recommendation for the foundation [0.07]; Unskilled Labor [144 h]; Carpenter [96 h] | 27,679.23 | UB | CON |
| CO-UB-IRT-180 |  | Steel Reinforcement work for Tank Foundation | 7d | 2026-10-07 | 2026-10-15 | CO-UB-IRT-170 | 9.75d | 0d | Glass Fused Bolted (GLS) 1500 m3 Tank with associated accessories & manufacturer recommendation for the foundation [0.06]; Unskilled Labor [56 h]; Steel Fixer [168 h] | 25,833.95 | UB | CON |
| CO-UB-IRT-190 |  | Casting concrete for Tank Foundation | 1d | 2026-10-15 | 2026-10-17 | CO-UB-IRT-180 | 9.75d | 0d | Glass Fused Bolted (GLS) 1500 m3 Tank with associated accessories & manufacturer recommendation for the foundation [0.02]; Unskilled Labor [8 h]; Mason [8 h] | 9,226.41 | UB | CON |

| ID | WBS | Activity | Duration | Start | Finish | Predecessors | Total float | Free float | Resources | Cost | 01- Network | 08 Stage |
| --- | --- | --- | --- | --- | --- | --- | --- | --- | --- | --- | --- | --- |
|  | 3 | **Tank Shell Erection&Roof Installation** |  | 2026-10-17 | 2026-11-30 |  |  |  |  |  |  |  |
| CO-UB-IRT-200 |  | Bottom ring installation | 10d | 2026-10-17 | 2026-10-28 | CO-UB-IRT-190 | 9.75d | 0d | Glass Fused Bolted (GLS) 1500 m3 Tank with associated accessories & manufacturer recommendation for the foundation [0.13]; Skilled Labor [160 h]; Unskilled Labor [80 h] | 55,358.46 | UB | CON |
| CO-UB-IRT-210 |  | shell erection | 14d | 2026-10-28 | 2026-11-14 | CO-UB-IRT-200 | 9.75d | 0d | Glass Fused Bolted (GLS) 1500 m3 Tank with associated accessories & manufacturer recommendation for the foundation [0.18]; Skilled Labor [224 h]; Unskilled Labor [112 h] | 73,811.28 | UB | CON |
| CO-UB-IRT-220 |  | Aluminum dome / steel roof installation | 14d | 2026-11-14 | 2026-11-30 | CO-UB-IRT-210 | 9.75d | 0d | Glass Fused Bolted (GLS) 1500 m3 Tank with associated accessories & manufacturer recommendation for the foundation [0.22]; Skilled Labor [224 h]; Unskilled Labor [112 h] | 92,264.1 | UB | CON |
|  | 4 | **Mechanical Work&Accessories** |  | 2026-11-30 | 2026-12-16 |  |  |  |  |  |  |  |
| CO-UB-IRT-230 |  | Inlet / outlet piping connections | 6d | 2026-11-30 | 2026-12-07 | CO-UB-IRT-220 | 9.75d | 0d | Glass Fused Bolted (GLS) 1500 m3 Tank with associated accessories & manufacturer recommendation for the foundation [0.13]; Unskilled Labor [48 h]; Plumber [48 h] | 54,737.22 | UB | CON |
| CO-UB-IRT-240 |  | installation Valves | 6d | 2026-12-07 | 2026-12-14 | CO-UB-IRT-230 | 9.75d | 0d | Glass Fused Bolted (GLS) 1500 m3 Tank with associated accessories & manufacturer recommendation for the foundation [0.09]; Unskilled Labor [48 h]; Plumber [48 h] | 36,905.64 | UB | CON |
| CO-UB-IRT-250 |  | Ladders, platforms & handrails | 2d | 2026-12-14 | 2026-12-16 | CO-UB-IRT-240 | 9.75d | 9d | Glass Fused Bolted (GLS) 1500 m3 Tank with associated accessories & manufacturer recommendation for the foundation [0.04]; Skilled Labor [32 h]; Unskilled Labor [16 h] | 14,762.26 | UB | CON |
|  | 1 | **Control Room** |  | 2026-07-14 | 2026-12-23 |  |  |  |  |  |  |  |
|  | 5 | **Civil Work** |  | 2026-07-14 | 2026-09-16 |  |  |  |  |  |  |  |
| CO-UB-CR-100 |  | Excavation Work For Control Room Foundation | 7d | 2026-07-14 | 2026-07-22 | CO-UB-LS-220 | 19.75d | 0d | Price; Skilled Labor [56 h]; Unskilled Labor [112 h]; Excavator [56 h] |  | UB | CON |
| CO-UB-CR-110 |  | Pouring for Plain Concrete | 5d | 2026-07-22 | 2026-07-28 | CO-UB-CR-100 | 19.75d | 0d | Price [48286.3 SAR]; Unskilled Labor [40 h]; Mason [40 h] | 48,286.32 | UB | CON |
| CO-UB-CR-120 |  | Pouring R.C Footing For Control Room | 21d | 2026-07-28 | 2026-08-22 | CO-UB-CR-110 | 19.75d | 0d | Price [120716 SAR]; Unskilled Labor [168 h]; Mason [168 h] | 120,715.82 | UB | CON |
| CO-UB-CR-130 |  | Pouring R.C Columns For Control Room | 12d | 2026-08-22 | 2026-09-05 | CO-UB-CR-120 | 19.75d | 0d | Price [144859 SAR]; Unskilled Labor [96 h]; Mason [96 h] | 144,858.97 | UB | CON |
| CO-UB-CR-140 |  | Pouring Beams and Slab For Control Room | 10d | 2026-09-05 | 2026-09-16 | CO-UB-CR-130 | 19.75d | 0d | Price [169002 SAR]; Unskilled Labor [80 h]; Mason [80 h] | 169,002.15 | UB | CON |
|  | 6 | **Finishing Work** |  | 2026-09-16 | 2026-12-23 |  |  |  |  |  |  |  |
|  | 1 | **Architictural work** |  | 2026-09-16 | 2026-11-23 |  |  |  |  |  |  |  |
| CO-UB-CR-150 |  | Brick Work For Control Room | 20d | 2026-09-16 | 2026-10-11 | CO-UB-CR-140 | 19.75d | 0d | Price [64381.8 SAR]; Unskilled Labor [320 h]; Mason [320 h] | 64,381.77 | UB | CON |
| CO-UB-CR-160 |  | Thermal & Moisture Protection Work for Control Room | 7d | 2026-10-11 | 2026-10-19 | CO-UB-CR-150 | 19.75d | 0d | Price [64381.8 SAR]; Unskilled Labor [56 h]; Mason [56 h] | 64,381.77 | UB | CON |
| CO-UB-CR-200 |  | Install For Curtian Wall and Windows and Doors | 10d | 2026-10-19 | 2026-10-31 | CO-UB-CR-160 | 19.75d | 0d | Price [64381.8 SAR]; Skilled Labor [160 h]; Unskilled Labor [80 h] | 64,381.77 | UB | CON |
| CO-UB-CR-240 |  | External Finshing Work (Walls and Floor) | 10d | 2026-10-31 | 2026-11-11 | CO-UB-CR-200 | 19.75d | 0d | Price [64381.8 SAR]; Skilled Labor [160 h]; Unskilled Labor [80 h] | 64,381.77 | UB | CON |
| CO-UB-CR-250 |  | Internal Finshing Work (Walls,Floor and Ceiling) | 10d | 2026-11-11 | 2026-11-23 | CO-UB-CR-240 | 19.75d | 0d | Price [64381.8 SAR]; Skilled Labor [160 h]; Unskilled Labor [80 h] | 64,381.77 | UB | CON |
|  | 3 | **Mechanical Work** |  | 2026-10-11 | 2026-12-05 |  |  |  |  |  |  |  |
|  | 3 | **HVAC System** |  | 2026-10-11 | 2026-12-05 |  |  |  |  |  |  |  |
| CO-UB-CR-170 |  | Install of Refrigerant Piping ( fabricated metal ducts with flanges complete with supports, vanes, dampers ) | 4d | 2026-10-11 | 2026-10-15 | CO-UB-CR-150 | 38.75d | 0d | Price [64381.8 SAR]; Unskilled Labor [32 h]; Electrical Technician [64 h] | 64,381.77 | UB | CON |
| CO-UB-CR-260 |  | Install of Mini split actual capacity 2 Ton and Ducted split actual capacity 4 Ton | 7d | 2026-11-23 | 2026-12-01 | CO-UB-CR-250, CO-UB-CR-170 | 30.75d | 0d | Price [64381.8 SAR]; Unskilled Labor [56 h]; Electrical Technician [112 h] | 64,381.77 | UB | CON |
| CO-UB-CR-310 |  | Install of Air Grills 150mm x150mm and Air Diffuser 600mm x 600mm | 3d | 2026-12-01 | 2026-12-05 | CO-UB-CR-260, CO-UB-CR-170 | 30.75d | 11d | Price [64381.8 SAR]; Unskilled Labor [24 h]; Electrical Technician [48 h] | 64,381.77 | UB | CON |

| ID | WBS | Activity | Duration | Start | Finish | Predecessors | Total float | Free float | Resources | Cost | 01- Network | 08 Stage | 13 BUILDINGS |
| --- | --- | --- | --- | --- | --- | --- | --- | --- | --- | --- | --- | --- | --- |
|  | 4 | **Fire Fitting System** |  | 2026-10-15 | 2026-11-26 |  |  |  |  |  |  |  |  |
| CO-UB-CR-180 |  | Installation & Testing of 2 hours Fire rated system for closing the openings between rooms with help of Rock wool | 4d | 2026-10-15 | 2026-10-20 | CO-UB-CR-170 | 38.75d | 0d | Price [64381.8 SAR]; Unskilled Labor [32 h]; Electrical Technician [64 h] | 64,381.77 | UB | CON |  |
| CO-UB-CR-270 |  | Install Fire Extinguishers | 3d | 2026-11-23 | 2026-11-26 | CO-UB-CR-180, CO-UB-CR-250 | 37.75d | 18d | Price [64381.8 SAR]; Unskilled Labor [24 h]; Electrical Technician [48 h] | 64,381.77 | UB | CON |  |
|  | 4 | **Electrical Work** |  | 2026-10-20 | 2026-12-17 |  |  |  |  |  |  |  |  |
|  | 1 | **LV Power** |  | 2026-11-23 | 2026-12-10 |  |  |  |  |  |  |  |  |
| CO-UB-CR-190 |  | Install of Distribution board For Control Room | 5d | 2026-11-23 | 2026-11-29 | CO-UB-CR-170, CO-UB-CR-150, CO-UB-CR-250 | 25.75d | 0d | Price [29264.4 SAR]; Unskilled Labor [40 h]; Electrical Technician [80 h] | 29,264.44 | UB | CON |  |
| CO-UB-CR-220 |  | Install of Earting Cable for Control Room | 5d | 2026-11-29 | 2026-12-05 | CO-UB-CR-190 | 25.75d | 0d | Price [29264.4 SAR]; Unskilled Labor [40 h]; Electrical Technician [80 h] | 29,264.44 | UB | CON |  |
| CO-UB-CR-280 |  | Install of Socket outlet and LED Lighting | 5d | 2026-12-05 | 2026-12-10 | CO-UB-CR-190, CO-UB-CR-250, CO-UB-CR-220 | 25.75d | 6d | Price [29264.4 SAR]; Unskilled Labor [40 h]; Electrical Technician [80 h] | 29,264.44 | UB | CON |  |
|  | 3 | **Fire Detection And Alarm System** |  | 2026-10-20 | 2026-12-17 |  |  |  |  |  |  |  |  |
| CO-UB-CR-210 |  | Install of 2C x 1.5 Sqm FR Rated Armored - Cable For Loop Wiring | 5d | 2026-10-20 | 2026-10-26 | CO-UB-CR-170, CO-UB-CR-180 | 38.75d | 0d | Price [29264.4 SAR]; Unskilled Labor [40 h]; Electrical Technician [80 h] | 29,264.44 | UB | CON |  |
| CO-UB-CR-230 |  | Install of Transmission Communication cable - Fiber Optics 12Core | 5d | 2026-10-26 | 2026-11-01 | CO-UB-CR-210 | 38.75d | 19d | Price [29264.4 SAR]; Unskilled Labor [40 h]; Electrical Technician [80 h] | 29,264.44 | UB | CON |  |
| CO-UB-CR-290 |  | Install of power supply system for fire alarm control panel | 5d | 2026-11-23 | 2026-11-29 | CO-UB-CR-230, CO-UB-CR-250 | 19.75d | 0d | Price [29264.4 SAR]; Unskilled Labor [40 h]; Electrical Technician [80 h] | 29,264.44 | UB | CON |  |
| CO-UB-CR-300 |  | Install of Fire Alarm Control panel | 6d | 2026-11-29 | 2026-12-06 | CO-UB-CR-250 FF, CO-UB-CR-210, CO-UB-CR-230, CO-UB-CR-290 | 19.75d | 0d | Price [29264.4 SAR]; Unskilled Labor [48 h]; Electrical Technician [96 h] | 29,264.44 | UB | CON |  |
| CO-UB-CR-320 |  | Installation of the addressable manual call point with operation safety glass breaking | 3d | 2026-12-06 | 2026-12-09 | CO-UB-CR-300, CO-UB-CR-250 | 19.75d | 0d | Price [29264.4 SAR]; Unskilled Labor [24 h]; Electrical Technician [48 h] | 29,264.44 | UB | CON |  |
| CO-UB-CR-330 |  | Install of the photoelectric heat & smoke detector | 3d | 2026-12-09 | 2026-12-13 | CO-UB-CR-320 | 19.75d | 0d | Price [29264.4 SAR]; Unskilled Labor [24 h]; Electrical Technician [48 h] | 29,264.44 | UB | CON |  |
| CO-UB-CR-340 |  | Install of Sounder With Beacon | 3d | 2026-12-09 | 2026-12-13 | CO-UB-CR-330 SS | 19.75d | 0d | Price [29264.4 SAR]; Unskilled Labor [24 h]; Electrical Technician [48 h] | 29,264.44 | UB | CON |  |
| CO-UB-CR-350 |  | Install of Addressable Control module | 4d | 2026-12-13 | 2026-12-17 | CO-UB-CR-340 | 19.75d | 0d | Price [29264.4 SAR]; Unskilled Labor [32 h]; Electrical Technician [64 h] | 29,264.44 | UB | CON |  |
|  | 2 | **Furnitures work** |  | 2026-12-17 | 2026-12-23 |  |  |  |  |  |  |  |  |
| CO-UB-CR-360 |  | Office Chairs,Tables and Stand | 5d | 2026-12-17 | 2026-12-23 | CO-UB-CR-350, CO-UB-CR-280, CO-UB-CR-270, CO-UB-CR-310 | 19.75d | 9d | Price [160954 SAR]; Skilled Labor [80 h]; Unskilled Labor [40 h] | 160,954.42 | UB | CON |  |
|  | ML | **Softscape and Planting Works** |  | 2026-08-27 | 2026-10-22 |  |  |  |  |  |  |  |  |
|  | 1 | **Planting Beds Preparation** |  | 2026-08-27 | 2026-09-16 |  |  |  |  |  |  |  |  |
| CO-LS-PL-100 |  | Excavation of planting beds | 7d | 2026-08-27 | 2026-09-05 | PRO-FE-CV-DL-90, PRO-R25-IR-DL-140 | 26d | 0d | Price [96790.5 SAR]; Skilled Labor [56 h]; Unskilled Labor [112 h]; Excavator [56 h] | 96,790.51 | UB | CON | LS |
| CO-LS-PL-110 |  | Supply & placement of suitable topsoil | 5d | 2026-09-05 | 2026-09-10 | CO-LS-PL-100 | 26d | 0d | Price [290372 SAR]; Skilled Labor [80 h]; Unskilled Labor [40 h] | 290,371.52 | UB | CON |  |
| CO-LS-PL-120 |  | Soil improvement (fertilizer, compost, additives) | 5d | 2026-09-10 | 2026-09-16 | CO-LS-PL-110 | 26d | 0d | Price [290372 SAR]; Skilled Labor [80 h]; Unskilled Labor [40 h] | 290,371.52 | UB | CON |  |

| ID | WBS | Activity | Duration | Start | Finish | Predecessors | Total float | Free float | Resources | Cost | 01- Network | 08 Stage |
| --- | --- | --- | --- | --- | --- | --- | --- | --- | --- | --- | --- | --- |
|  | 2 | **Supports & Protection** |  | 2026-09-16 | 2026-09-29 |  |  |  |  |  |  |  |
| CO-LS-PL-130 |  | installation of plant supports / stakes | 5d | 2026-09-16 | 2026-09-22 | CO-LS-PL-120 | 26d | 0d | Price [290372 SAR]; Skilled Labor [80 h]; Unskilled Labor [40 h] | 290,371.52 | UB | CON |
| CO-LS-PL-140 |  | Ties and protection materials | 5d | 2026-09-22 | 2026-09-29 | CO-LS-PL-130 | 26d | 0d | Price [387162 SAR]; Skilled Labor [80 h]; Unskilled Labor [40 h] | 387,162.02 | UB | CON |
|  | 3 | **Plant Supply** |  | 2026-09-29 | 2026-10-05 |  |  |  |  |  |  |  |
| CO-LS-PL-150 |  | installation of trees | 5d | 2026-09-29 | 2026-10-05 | CO-LS-PL-140 | 26d | 0d | Price [580743 SAR]; Skilled Labor [80 h]; Unskilled Labor [40 h] | 580,743.02 | UB | CON |
|  | 4 | **Site Furnishings** |  | 2026-10-05 | 2026-10-22 |  |  |  |  |  |  |  |
| CO-LS-PL-160 |  | installation of Seating benches | 5d | 2026-10-05 | 2026-10-11 | CO-LS-PL-150 | 26d | 0d | Price [231434 SAR]; Skilled Labor [80 h]; Unskilled Labor [40 h] | 231,433.98 | UB | CON |
| CO-LS-PL-170 |  | tone boulders – placement & fixing Works | 5d | 2026-10-11 | 2026-10-17 | CO-LS-PL-160 | 26d | 0d | Price [231434 SAR]; Skilled Labor [80 h]; Unskilled Labor [40 h] | 231,434.01 | UB | CON |
| CO-LS-PL-180 |  | Gravel Works | 5d | 2026-10-17 | 2026-10-22 | CO-LS-PL-170 | 26d | 16d | Price [231434 SAR]; Skilled Labor [80 h]; Unskilled Labor [40 h] | 231,434.01 | UB | CON |
|  | 1 | **Fence and Gaurd Room** |  | 2026-04-21 | 2027-02-22 |  |  |  |  |  |  |  |
|  | 1 | **Gaurd Room Work** |  | 2026-06-29 | 2027-01-03 |  |  |  |  |  |  |  |
|  | 1 | **Civil Work** |  | 2026-06-29 | 2026-09-01 |  |  |  |  |  |  |  |
| A1000 |  | Excavation Work For Gaurd Room Foundation | 7d | 2026-06-29 | 2026-07-07 | MS-CF-MOB, ENG-SH-GR-A-190, PRO-GR-CV-1DL-60, PRO-GR-CV-DL-70 FF | 10.75d | 0d | Skilled Labor [56 h]; Unskilled Labor [112 h]; Excavator [56 h] |  | GR&FE | CON |
| A1010 |  | Pouring for Plain Concrete | 5d | 2026-07-07 | 2026-07-13 | A1000 | 10.75d | 0d | 100 mm thickness lean concrete under the foundation [100]; Unskilled Labor [160 h]; Carpenter [80 h]; Steel Fixer [80 h] | 28,140 | GR&FE | CON |
| A1020 |  | Pouring R.C Footing For Gaurd Room | 21d | 2026-07-13 | 2026-08-06 | A1010 | 10.75d | 0d | Foundation [50]; Slab on Grade [20]; Walls; Unskilled Labor [672 h]; Carpenter [336 h]; Steel Fixer [336 h] | 40,602 | GR&FE | CON |
| A1030 |  | Pouring R.C Columns For Gaurd Room | 12d | 2026-08-06 | 2026-08-20 | A1020 | 10.75d | 0d | Columns [7]; Unskilled Labor [384 h]; Carpenter [192 h]; Steel Fixer [192 h] | 8,442 | GR&FE | CON |
| A1040 |  | Pouring Beams and Slab For Gaurd Room | 10d | 2026-08-20 | 2026-09-01 | A1030 | 10.75d | 0d | Beams [20]; Slabs [31]; Lightweight Concrete Roof insulation as per Architect's specification [155]; Unskilled Labor [320 h]; Carpenter [160 h]; Steel Fixer [160 h] | 55,536.3 | GR&FE | CON |
|  | 2 | **Finishing Work** |  | 2026-09-01 | 2027-01-03 |  |  |  |  |  |  |  |
|  | 1 | **Architictural work** |  | 2026-09-01 | 2026-11-15 |  |  |  |  |  |  |  |
| A1050 |  | Brick Work For Gaurd Room | 20d | 2026-09-01 | 2026-09-26 | A1040 | 10.75d | 0d | Common brickwork. 300mm thick; vertical straight wall complete with accessories.; Insulated brickwork. with expanded polystyrene 200mm thick; vertical straight wall complete with accessories . [102]; Common brickwork. 150mm thick; vertical straight wall complete with accessories. [180]; Skilled Labor [320 h]; Unskilled Labor [160 h] | 22,045.68 | GR&FE | CON |
| A1060 |  | Thermal & Moisture Protection Work for Gaurd Room | 7d | 2026-09-26 | 2026-10-04 | A1050 | 16.75d | 6d | 2 perpendicular layers of cold bitumen coats [155]; 2 layer of 4mm HDPE membrane, 2 perpendicular layers cold bitumen coats [155]; 1 layer EPOXY Paint 300 micron [155]; Membrane fully bonded to prime deck and upstand [155]; Geotextile Filter membrane uv resistance [155]; 85mm thick thermal insulation [155]; 1.5mm thick epdm waterproofing membrane [155]; Skilled Labor [112 h]; Unskilled Labor [56 h] | 27,416.4 | GR&FE | CON |
| A1070 |  | Install For Curtian Wall and Windows and Doors | 10d | 2026-10-11 | 2026-10-22 | A1060, A1130, A1150 | 10.75d | 0d | CW01 - 4500 mm width x 3700 mm height [1]; CW02 - 4500 mm width x 3700 mm height [1]; CW03 - 4500 mm width x 3700 mm height [1]; CW04 - 4500 mm width x 3700 mm height [1]; CW05 - 7500 mm width x 4250 mm height [1]; CW06 - 7500 mm width x 4250 mm height [1]; W01 - 1000 mm width x 2000 mm height [1]; W02 - 2000 mm width x 2000 mm height [2]; W03 - 2000 mm width x 1000 mm height [3]; D2 - 900 mm x 2200 mm height temper door [7]; D3 - 950 mm x 2000 mm height temper door [2]; Skilled Labor [160 h]; Unskilled Labor [80 h] | 114,216.91 | GR&FE | CON |
| A1080 |  | External Finshing Work (Walls and Floor) | 10d | 2026-10-22 | 2026-11-03 | A1070 | 10.75d | 0d | Supply and install 300*300mm terrazzo tiles with 150mm high skirting at perimeter with approv [133]; Skilled Labor [160 h]; Unskilled Labor [80 h] | 7,485.24 | GR&FE | CON |
| A1090 |  | Internal Finshing Work (Walls,Floor and Ceiling) | 10d | 2026-11-03 | 2026-11-15 | A1080 | 10.75d | 0d | Supply and install 300*300mm glazed ceramic wall tiles on cement mortar and including rough [95]; Supply and install internal plastering and 2 coats of acrylic paint at walls includin [216]; Supply and install 300*300mm glazed ceramic wall tiles on cement mortar and including rough and smooth p [12]; Supply and install 600*600mm porcelain tiles with approved quality on 30 mm mortar inclu [125]; Supply and install 12.5mm thk, gypsum board suspended ceiling including s [5]; Skilled Labor [160 h]; Unskilled Labor [80 h] | 21,217.56 | GR&FE | CON |

| ID | WBS | Activity | Duration | Start | Finish | Predecessors | Total float | Free float | Resources | Cost | 01- Network | 08 Stage |
| --- | --- | --- | --- | --- | --- | --- | --- | --- | --- | --- | --- | --- |
|  | 3 | **Mechanical Work** |  | 2026-09-26 | 2026-11-26 |  |  |  |  |  |  |  |
|  | 1 | **Sanitary Drainage & Plumbing System** |  | 2026-09-26 | 2026-10-11 |  |  |  |  |  |  |  |
| A1110 |  | Install Sanitary Piping System (UPVC) | 4d | 2026-09-26 | 2026-09-30 | A1050 | 10.75d | 0d | Supply and install Hand Wash Basin with Water Tap, angle valve, P-trap connected to 50mm diameter s [3]; Supply and install paper towel dispenser, surface mounted, satin finish stainless steel as per approv [3]; Supply and install mirror, size 460*910mm as per approved sample including frames, backing and all accessories to complete. [3]; Supply and install towel ring , surface mounted, satin finish stainless steel as per approved sample including accessories. [3]; Kitchen sink with single bowl with hot/cold water mixer. [3]; 50mm diameter [37]; 75mm diameter [4]; 80mm diameter [11]; 100mm diameter [2]; 110mm diameter [12]; Floor cleanout, size 75 mm diameter [2]; Floor cleanout, size 110 mm diameter [4]; Skilled Labor [64 h]; Unskilled Labor [32 h] | 14,890.08 | GR&FE | CON |
| A1120 |  | Install Base mounted flush tank water Western water closet system | 6d | 2026-09-30 | 2026-10-07 | A1110 | 10.75d | 0d | Supply and install Base mounted flush tank water Western water closet system with lid connected to 110mm soil pipe [2]; Skilled Labor [96 h]; Unskilled Labor [48 h] | 5,145.6 | GR&FE | CON |
| A1130 |  | Install 1 meter length 10mm diameter Flexible Hose and Gate Valves and Slow Closing Valve | 3d | 2026-10-07 | 2026-10-11 | A1120 | 10.75d | 0d | Gate Valves [2]; Slow Closing Valve [2]; 1 meter length 10mm diameter Flexible Hose with insulated handle complete with fork support, index push, vacuum breaker [2]; Skilled Labor [48 h]; Unskilled Labor [24 h] | 2,347.68 | GR&FE | CON |
|  | 2 | **Water Supply System** |  | 2026-09-26 | 2026-11-17 |  |  |  |  |  |  |  |
| A1240 |  | Install GRP water tanks capacity of each 1000 liter | 3d | 2026-09-26 | 2026-09-29 | A1050 | 11.75d | 0d | GRP water tanks capacity of each 1000 liter complete with all fittings, all valves and concrete pad [3]; Skilled Labor [48 h]; Unskilled Labor [24 h] | 16,884 | GR&FE | CON |
| A1140 |  | Install for Cold Water Pipe complete with joints, angles, reducer etc. | 5d | 2026-09-29 | 2026-10-05 | A1240 | 11.75d | 0d | 13mm diameter [1]; 15mm diameter [1]; 20mm diameter [1]; 25mm diameter [19]; 32mm diameter [35]; 40mm diameter [12]; 50mm diameter [1]; Skilled Labor [80 h]; Unskilled Labor [40 h] | 2,709.48 | GR&FE | CON |
| A1150 |  | Install for Hot Water Pipe complete with joints, angles, reducer etc. | 4d | 2026-10-05 | 2026-10-10 | A1140 | 11.75d | 0d | 13mm diameter [1]; 20mm diameter [5]; 25mm diameter [12]; Skilled Labor [64 h]; Unskilled Labor [32 h] | 478.38 | GR&FE | CON |
| A1160 |  | Install for Isolation Valve,Spray Head,Roof Drain,Floor Drain,Gully teap,Vend on Roof to exhaust air | 3d | 2026-10-10 | 2026-10-13 | A1150 | 36.75d | 0d | Isolation Valve Size 20 [3]; Isolation Valve Size 25 [3]; Isolation Valve Size 32 [5]; Isolation Valve Size 40 [1]; Isolation Valve Size 50 [1]; 20 mm diameter spray head for cold water supply [3]; Roof drain [3]; Vent on a roof to exhaust air [3]; Floor drain 100x80mm [4]; Gully trap 300x300 mm [3]; Skilled Labor [48 h]; Unskilled Labor [24 h] | 10,813.8 | GR&FE | CON |
| A1170 |  | Install of Inspection chamber, size 800x900x1000 | 2d | 2026-10-13 | 2026-10-15 | A1160 | 36.75d | 26d | inspection chamber, size 800x900x1000 [3]; Skilled Labor [32 h]; Unskilled Labor [16 h] | 7,236 | GR&FE | CON |
| A1180 |  | Install OF Electric Water Heater set with connection and Water meter complete with accessories | 2d | 2026-11-15 | 2026-11-17 | A1170, A1090 | 10.75d | 0d | Supply and install Electric Water Heater set with connection [3]; Water meter complete with accessories. [3]; Skilled Labor [32 h]; Unskilled Labor [16 h] | 8,442 | GR&FE | CON |
|  | 3 | **HVAC System** |  | 2026-09-30 | 2026-11-26 |  |  |  |  |  |  |  |
| A1200 |  | Install of Refrigerant Piping ( fabricated metal ducts with flanges complete with supports, vanes, dampers ) | 4d | 2026-09-30 | 2026-10-05 | A1050, A1110 | 37.75d | 0d | Supply, fabricate, install and testing factory fabricated metal ducts with flanges complete with supports, vanes, [40]; Supplying, installation testing & commissioning of external insulation on ducts [40]; Supply, fix, testing and commissioning of exhaust air/fresh air louvers of powder coated extruded aluminium construction. [1]; Providing, fixing, testing and commissioning of powder coated extruded aluminum sections grills and diffusers with dampers. [2]; Unskilled Labor [32 h]; Electrical Technician [64 h] | 5,065.2 | GR&FE | CON |
| A1190 |  | Install of Mini split actual capacity 2 Ton and Ducted split actual capacity 4 Ton | 7d | 2026-11-15 | 2026-11-23 | A1090, A1200 | 37.75d | 0d | Mini split actual capacity 2 Ton [1]; Ducted split actual capacity 4 Ton [2]; Unskilled Labor [56 h]; Electrical Technician [112 h] | 12,462 | GR&FE | CON |
| A1210 |  | Install of Air Grills 150mm x150mm and Air Diffuser 600mm x 600mm | 3d | 2026-11-23 | 2026-11-26 | A1190, A1200 | 37.75d | 27d | Air Grills 150mm x150mm [2]; Air Diffuser 600mm x 600mm [6]; Unskilled Labor [24 h]; Electrical Technician [48 h] | 2,090.4 | GR&FE | CON |
|  | 4 | **Fire Fitting System** |  | 2026-10-05 | 2026-11-22 |  |  |  |  |  |  |  |
| A1220 |  | Installation & Testing of 2 hours Fire rated system for closing the openings between rooms with help of Rock wool | 6d | 2026-10-05 | 2026-10-12 | A1200 | 42.75d | 0d | Supply, Installation & Testing of 2 hours Fire rated system for closing the openings between roo [1]; Unskilled Labor [48 h]; Electrical Technician [96 h] | 20,100 | GR&FE | CON |
| A1230 |  | Install Fire Extinguishers | 6d | 2026-11-15 | 2026-11-22 | A1220, A1090 | 41.75d | 31d | 4.5 KG CO2 Type Fire Extinguishers [4]; 6 KG ABC Type Fire Extinguishers [4]; Unskilled Labor [48 h]; Electrical Technician [96 h] | 19,296 | GR&FE | CON |
|  | 4 | **Electrical Work** |  | 2026-10-05 | 2026-12-28 |  |  |  |  |  |  |  |
|  | 1 | **LV Power** |  | 2026-10-05 | 2026-11-21 |  |  |  |  |  |  |  |
| A1250 |  | Install of Distribution board For Gaurd Room | 5d | 2026-10-05 | 2026-10-11 | A1200, A1050 | 37.75d | 0d | Guard Room 1 [1]; Guard Room 2 [1]; Guard Room 3 [1]; Unskilled Labor [40 h]; Electrical Technician [80 h] | 7,975.68 | GR&FE | CON |
| A1270 |  | Install of Earting Cable for Gaurd Room | 5d | 2026-10-11 | 2026-10-17 | A1250 | 37.75d | 25d | 4mm2 Cu./FRLSZH Cable [600]; 6mm2 Cu./FRLSZH Cable [110]; Unskilled Labor [40 h]; Electrical Technician [80 h] | 5,306.4 | GR&FE | CON |
| A1260 |  | Install of Socket outlet and LED Lighting | 5d | 2026-11-15 | 2026-11-21 | A1250, A1090, A1270 | 42.75d | 32d | 30A, 2P AC Disconnect Switch [11]; 20A Duplex Receptacle Floor Mounted [12]; Twin Socket outlet [6]; Twin Socket outlet, Weather Proof [5]; Single gang Lighting switch [6]; 2way Single gang Lighting switch [2]; 36W LED linear Pendant lighting [14]; 36W LED Emergency linear Pendant lighting [6]; 13W recess mounted LED down light fitting [8]; 13W recess emergency mounted LED down light fitting with 1.5 Hr Battery [6]; 10.4W LED Exit light with 1.5 Hr Battery [3]; Unskilled Labor [40 h]; Electrical Technician [80 h] | 32,143.92 | GR&FE | CON |

| ID | WBS | Activity | Duration | Start | Finish | Predecessors | Total float | Free float | Resources | Cost | 01- Network | 08 Stage | 12 FENCE |
| --- | --- | --- | --- | --- | --- | --- | --- | --- | --- | --- | --- | --- | --- |
|  | 3 | **Fire Detection And Alarm System** |  | 2026-10-12 | 2026-12-09 |  |  |  |  |  |  |  |  |
| A1340 |  | Install of 2C x 1.5 Sqm FR Rated Armored - Cable For Loop Wiring | 5d | 2026-10-12 | 2026-10-18 | A1200, A1220 | 42.75d | 0d | 2C x 1.5 Sqm FR Rated Armored - Cable For Loop Wiring [1800]; DACT (Auto - Dailer) for 24x7 Civil Defence [1]; Unskilled Labor [40 h]; Electrical Technician [80 h] | 18,090 | GR&FE | CON |  |
| A1350 |  | Install of Transmission Communication cable - Fiber Optics 12Core | 5d | 2026-10-18 | 2026-10-24 | A1340 | 42.75d | 19d | Transmission Communication cable - Fiber Optics 12Core [2500]; Transmission Communication cable - Ethernet Cable [500]; Supply, install to site and installation of power cable [1600]; Fire Fighter’s Telephone Centre [1]; Fireman’s Telephone Jack [2]; Voice Command Center [1]; Unskilled Labor [40 h]; Electrical Technician [80 h] | 86,922.45 | GR&FE | CON |  |
| A1360 |  | Install of power supply system for fire alarm control panel | 5d | 2026-11-15 | 2026-11-21 | A1350, A1090 | 23.75d | 0d | Supply, install to site and installation of power supply system for fire alarm control panel [1]; Unskilled Labor [40 h]; Electrical Technician [80 h] | 3,093.39 | GR&FE | CON |  |
| A1280 |  | Install of Fire Alarm Control panel | 6d | 2026-11-21 | 2026-11-28 | A1090 FF, A1340, A1350, A1360 | 23.75d | 0d | Fire Alarm Control panel with fire alarm zoning with Mimic panel with fire alarm zoning [4]; Main Fire Alarm Control panel with fire alarm zoning with Mimic panel with fire alarm zoning [1]; Unskilled Labor [48 h]; Electrical Technician [96 h] | 27,215.4 | GR&FE | CON |  |
| A1290 |  | Installation of the addressable manual call point with operation safety glass breaking | 3d | 2026-11-28 | 2026-12-01 | A1280, A1090 | 23.75d | 0d | Supply and installation of the addressable manual call point with operation safety glass breaking and pushbutton [17]; Unskilled Labor [24 h]; Electrical Technician [48 h] | 2,801.94 | GR&FE | CON |  |
| A1300 |  | Install of the photoelectric heat & smoke detector | 3d | 2026-12-01 | 2026-12-05 | A1290 | 23.75d | 0d | Supply and installation of the photoelectric heat & smoke detector with base [41]; Unskilled Labor [24 h]; Electrical Technician [48 h] | 9,889.2 | GR&FE | CON |  |
| A1310 |  | Install of Sounder With Beacon | 3d | 2026-12-01 | 2026-12-05 | A1300 SS | 23.75d | 0d | Sounder With Beacon [20]; Unskilled Labor [24 h]; Electrical Technician [48 h] | 3,296.4 | GR&FE | CON |  |
| A1320 |  | Install of Addressable Control module | 4d | 2026-12-05 | 2026-12-09 | A1310 | 23.75d | 13d | Addressable Control module for Sounders [20]; Addressable Control module for HVAC System [2]; Addressable Monitor module for HVAC System [2]; Unskilled Labor [32 h]; Electrical Technician [64 h] | 4,774.42 | GR&FE | CON |  |
|  | 2 | **Security System** |  | 2026-11-17 | 2026-12-28 |  |  |  |  |  |  |  |  |
| A1580 |  | Install 8 Port Industrial PoE Switch 10/100BaseT (0 deg to +70 deg. Celsius) | 6d | 2026-11-17 | 2026-11-24 | A1250, A1090, A1180, A1270 | 10.75d | 0d | 8 Port Industrial PoE Switch 10/100BaseT (0 deg to +70 deg. Celsius) [31]; Unskilled Labor [48 h]; Electrical Technician [96 h] | 226,185.3 | GR&FE | CON |  |
| A1590 |  | Optical Fiber,48 Core Splice Closure | 3d | 2026-11-24 | 2026-11-28 | A1580 | 11.75d | 1d | 06C Optical Fiber SM [2505]; 48C Optical Fiber SM [7010]; 48 Core Splice Closure [7]; Unskilled Labor [24 h]; Electrical Technician [48 h] | 185,953.14 | GR&FE | CON |  |
| A1650 |  | Pole/Bollard mounted IP( PoE) and 12U rack dimension | 4d | 2026-11-24 | 2026-11-29 | A1580 | 10.75d | 0d | Pole/Bollard mounted IP( PoE), Automatic Number Plate Recognition (ANPR, camera, 5MP,IP 66, IR illumin [6]; 12U rack dimension (W x H x L) 600 x 625 x 600 mm [1]; Unskilled Labor [32 h]; Electrical Technician [64 h] | 76,872.45 | GR&FE | CON |  |
| A1600 |  | Boom Barrier at Security Guard Room | 6d | 2026-11-29 | 2026-12-06 | A1590, A1650 | 10.75d | 0d | Magnetic Control Access barrier, Automatic Vehicular Barriers to be installed on ground with magnetic access [6]; Boom Barrier at Security Guard Room [6]; Unskilled Labor [48 h]; Electrical Technician [96 h] | 160,197 | GR&FE | CON |  |
| A1610 |  | Pedestrian turnstile at Security Guard Room | 7d | 2026-12-06 | 2026-12-14 | A1600 | 10.75d | 0d | Pedestrian turnstile at Security Guard Room [6]; Unskilled Labor [56 h]; Electrical Technician [112 h] | 149,917.85 | GR&FE | CON |  |
| A1620 |  | Access Control Unit and Access Card Reader | 4d | 2026-12-14 | 2026-12-19 | A1610 | 10.75d | 0d | Access Control Unit [3]; Access Card Reader [3]; Unskilled Labor [32 h]; Electrical Technician [64 h] | 9,559.56 | GR&FE | CON |  |
| A1630 |  | Magnetic Lock and Break Glass and Exit Push button | 5d | 2026-12-19 | 2026-12-24 | A1620 | 10.75d | 0d | Magnetic Lock [3]; Break Glass [3]; Exit Push button [3]; Unskilled Labor [40 h]; Electrical Technician [80 h] | 3,004.95 | GR&FE | CON |  |
| A1640 |  | Door Sensor and Biometrics Reader | 3d | 2026-12-24 | 2026-12-28 | A1630, A1320 | 10.75d | 0d | Door Sensor [3]; Biometrics Reader [2]; Unskilled Labor [24 h]; Electrical Technician [48 h] | 1,252.9 | GR&FE | CON |  |
|  | 2 | **Furnitures work** |  | 2026-12-28 | 2027-01-03 |  |  |  |  |  |  |  |  |
| A1100 |  | Office Chairs,Tables and Stand | 5d | 2026-12-28 | 2027-01-03 | A1640, A1320, A1260, A1230, A1210, A1180 | 10.75d | 0d | Office Chairs [4]; Office Tables [4]; Guard Stand [2]; Skilled Labor [80 h]; Unskilled Labor [40 h] | 14,472 | GR&FE | CON |  |
|  | 2 | **Fence Work** |  | 2026-04-21 | 2027-02-22 |  |  |  |  |  |  |  |  |
|  | 1 | **Northern Fence N01:N03** |  | 2026-04-21 | 2026-12-19 |  |  |  |  |  |  |  |  |
|  | 1 | **Civil Work** |  | 2026-04-21 | 2026-06-10 |  |  |  |  |  |  |  |  |
| CO-SU-FE-N-CI-100 |  | Excavation Work For Northern Fence | 7d | 2026-04-21 | 2026-04-29 | ENG-SH-GR-A-200, PRO-FE-CV-DL-80 SS+3d, CO-EW-110 SS+5d, PRO-FE-CV-MF-60 SS | 0d |  | Skilled Labor [56 h]; Unskilled Labor [112 h]; Excavator [56 h] |  | GR&FE | CON | NORTH |
| CO-SU-FE-N-CI-110 |  | Pouring for Plain Concrete Northern Fence | 3d | 2026-04-29 | 2026-05-03 | CO-SU-FE-N-CI-100 | 0d |  | 100 mm thickness lean concrete under the foundation [127.27]; Unskilled Labor [96 h]; Carpenter [48 h]; Steel Fixer [48 h] | 35,814.55 | GR&FE | CON | NORTH |
| CO-SU-FE-N-CI-120 |  | Pouring R.C Footing For Northern Fence | 10d | 2026-05-03 | 2026-05-14 | CO-SU-FE-N-CI-110 | 0d |  | Foundation [660]; Slab on Grade; Unskilled Labor [320 h]; Carpenter [160 h]; Steel Fixer [160 h] | 397,980 | GR&FE | CON | NORTH |
| CO-SU-FE-N-CI-130 |  | Pouring R.C Columns For Northern Fence | 5d | 2026-05-14 | 2026-05-20 | CO-SU-FE-N-CI-120 | 0d |  | Walls [178.18]; Columns [33.18]; Unskilled Labor [160 h]; Carpenter [80 h]; Steel Fixer [80 h] | 226,252.91 | GR&FE | CON | NORTH |
| CO-SU-FE-N-CI-140 |  | Pouring Beams For Northern Fence | 4d | 2026-06-06 | 2026-06-10 | CO-SU-FE-N-CI-130, CO-SU-FE-N-AR-100 | 1d |  | Beams [24.36]; Unskilled Labor [128 h]; Carpenter [64 h]; Steel Fixer [64 h] | 27,423.71 | GR&FE | CON | NORTH |

| ID | WBS | Activity | Duration | Start | Finish | Predecessors | Total float | Free float | Resources | Cost | 01- Network | 08 Stage | 12 FENCE |
| --- | --- | --- | --- | --- | --- | --- | --- | --- | --- | --- | --- | --- | --- |
|  | 5 | **Finishing Work** |  | 2026-05-20 | 2026-12-19 |  |  |  |  |  |  |  |  |
|  | 3 | **Electrical Work** |  | 2026-06-06 | 2026-12-19 |  |  |  |  |  |  |  |  |
| CO-SU-FE-N-EL-100 |  | Trench excavation to receive 2 nos 50mm diameter PVC Conduit | 10d | 2026-06-06 | 2026-06-17 | CO-SU-FE-N-AR-100 | 37d | 0d | Trench excavation to receive 2 nos 50mm diameter PVC Conduit, sand bedding and embedded with sa [318.64]; Unskilled Labor [80 h]; Electrical Technician [160 h] | 11,955.24 | GR&FE | CON | NORTH |
| CO-SU-FE-N-EL-110 |  | Trench excavation to receive 3 nos 50mm diameter PVC Conduit | 10d | 2026-06-06 | 2026-06-17 | CO-SU-FE-N-EL-100 SS | 37d | 0d | 800mm depth minimum Trench excavation to receive 3 nos 50mm diameter PVC Conduit with spacer, sand bedding an [136.36]; Unskilled Labor [80 h]; Electrical Technician [160 h] | 5,481.82 | GR&FE | CON | NORTH |
| CO-SU-FE-N-EL-120 |  | Fixing of Control cable,CAT6A cable | 12d | 2026-06-17 | 2026-07-01 | CO-SU-FE-N-EL-100, CO-SU-FE-N-EL-110 | 37d | 0d | Control cable [282.73]; CAT6A cable [282.73]; Unskilled Labor [96 h]; Electrical Technician [192 h] | 2,841.41 | GR&FE | CON | NORTH |
| CO-SU-FE-N-EL-130 |  | Install 800mm x 800mm x 800mm height concrete handhole | 12d | 2026-06-17 | 2026-07-01 | CO-SU-FE-N-EL-100, CO-SU-FE-N-EL-110 | 37d | 0d | Supply and install 800mm x 800mm x 800mm height concrete handhole with bituminous paint all aroun [1.73]; Unskilled Labor [96 h]; Electrical Technician [192 h] | 2,971.88 | GR&FE | CON | NORTH |
| CO-SU-FE-N-EL-140 |  | Hot dipped galvanized cable conduits for CAT6A cable and Control Cables embedded to wall | 11d | 2026-06-17 | 2026-06-30 | CO-SU-FE-N-EL-100, CO-SU-FE-N-EL-110 | 38d | 1d | Hot dipped galvanized cable conduits for CAT6A cable and Control Cables embedded to wall [38.18]; 400V, 3PH, 60Hz lighting control panel (LCP-02) [0.09]; Unskilled Labor [88 h]; Electrical Technician [176 h] | 3,864.13 | GR&FE | CON | NORTH |
| CO-SU-FE-N-EL-150 |  | Fixing Earthing Work (Earth Pit,Grounding rod,Tinned Copper wire) | 16d | 2026-07-01 | 2026-07-20 | CO-SU-FE-N-EL-120, CO-SU-FE-N-EL-130, CO-SU-FE-N-EL-140 | 37d | 0d | Earth Pit [1.55]; Grounding rod 20mmX3m [0.82]; Grounding rod with Pit 20mmX3m [0.36]; Earthing Bar [0.27]; 120mm2 Tinned copper wire [18.18]; Unskilled Labor [128 h]; Electrical Technician [256 h] | 1,747.91 | GR&FE | CON | NORTH |
| CO-SU-FE-N-EL-160 |  | Field Equipment Cabinet enclosed outdoor complete with precast concrete footing, | 10d | 2026-07-20 | 2026-08-01 | CO-SU-FE-N-EL-150 | 37d | 0d | Field Equipment Cabinet enclosed outdoor complete with precast concrete footing, suitable for parame [1.73]; Unskilled Labor [80 h]; Electrical Technician [160 h] | 10,683.94 | GR&FE | CON | NORTH |
| CO-SU-FE-N-EL-170 |  | Fence Lightining 400V, 3PH, 60Hz lighting control panel (LCP-02) | 8d | 2026-07-20 | 2026-07-29 | CO-SU-FE-N-EL-150 | 39d | 2d | Unskilled Labor [64 h]; Electrical Technician [128 h] |  | GR&FE | CON | NORTH |
| CO-SU-FE-N-EL-180 |  | Install of direct buried armored cable 4C-16mm2 ,10mm2 | 9d | 2026-08-01 | 2026-08-11 | CO-SU-FE-N-EL-160, CO-SU-FE-N-EL-170 | 37d | 0d | 4C-16mm2 CU/XLPE/PVC direct buried armored cable [118.18]; 4C-10mm2 CU/XLPE/PVC direct buried armored cable [77.27]; Unskilled Labor [72 h]; Electrical Technician [144 h] | 7,467.45 | GR&FE | CON | NORTH |
| CO-SU-FE-N-EL-190 |  | Install 16mm2,10mm2 CU/PVC wire | 9d | 2026-08-01 | 2026-08-11 | CO-SU-FE-N-EL-160, CO-SU-FE-N-EL-170 | 37d | 0d | 16mm2 CU/PVC wire [118.18]; 10mm2 CU/PVC wire [77.27]; Unskilled Labor [72 h]; Electrical Technician [144 h] | 1,336.95 | GR&FE | CON | NORTH |
| CO-SU-FE-N-EL-200 |  | FEC-CCTV ( 4C-16mm2 CU/XLPE/PVC direct buried armored cable,16mm2 CU/PVC wire | 8d | 2026-08-01 | 2026-08-10 | CO-SU-FE-N-EL-160, CO-SU-FE-N-EL-170 | 43d | 1d | 4C-16mm2 CU/XLPE/PVC direct buried armored cable [370.91]; 16mm2 CU/PVC wire [370.91]; Unskilled Labor [64 h]; Electrical Technician [128 h] | 17,395.64 | GR&FE | CON | NORTH |
| CO-SU-FE-N-EL-210 |  | Junction Box for lighting fixture | 8d | 2026-08-11 | 2026-08-20 | CO-SU-FE-N-EL-180, CO-SU-FE-N-EL-190 | 37d | 2d | Junction Box for lighting fixture [12.36]; Unskilled Labor [64 h]; Electrical Technician [128 h] | 1,018.89 | GR&FE | CON | NORTH |
| CO-SU-FE-N-EL-220 |  | IR Intrusion Detection System Quad Beams | 8d | 2026-11-30 | 2026-12-09 | CO-SU-FE-N-EL-180, CO-SU-FE-N-EL-190, CO-SU-FE-N-EL-200, CO-SU-FE-N-EL-210, CO-SU-FE-N-AR-130, CO-SU-FE-N-AR-140, CO-SU-FE-N-AR-120, CO-SU-FE-EP2-AR-400 | 21d | 0d | IR Intrusion Detection System Quad Beams (Tx & Rx) (SL-350 QDM) [5.45]; Unskilled Labor [64 h]; Electrical Technician [128 h] | 38,504.29 | GR&FE | CON | NORTH |
| CO-SU-FE-N-EL-230 |  | Install of 38W, 230V, 1PH, 60Hz fence, led linear uplight lighting, IP66 | 9d | 2026-11-30 | 2026-12-10 | CO-SU-FE-N-EL-190, CO-SU-FE-N-EL-200, CO-SU-FE-N-EL-210, CO-SU-FE-N-AR-120, CO-SU-FE-N-AR-130, CO-SU-FE-N-AR-140, CO-SU-FE-EP2-AR-400 | 20d | 0d | 38W, 230V, 1PH, 60Hz fence, led linear uplight lighting, IP66 [12.36]; Unskilled Labor [72 h]; Electrical Technician [144 h] | 5,666.01 | GR&FE | CON | NORTH |
| CO-SU-FE-N-EL-240 |  | Install, fixings, testing and commissioning 80W LED | 7d | 2026-12-10 | 2026-12-19 | CO-SU-FE-N-EL-220, CO-SU-FE-N-EL-230 | 20d | 0d | Supply, Install, fixings, testing and commissioning 80W LED Projector waterproof DJ effect light including c [0.27]; Unskilled Labor [56 h]; Electrical Technician [112 h] | 248.33 | GR&FE | CON | NORTH |
|  | 4 | **Architictural work** |  | 2026-05-20 | 2026-11-19 |  |  |  |  |  |  |  |  |
| CO-SU-FE-N-AR-100 |  | Install Brick Work For Northern Fence | 10d | 2026-05-20 | 2026-06-06 | CO-SU-FE-N-CI-130 | 1d | 0d | Common brickwork. 300mm thick; vertical straight wall complete with accessories. [797.73]; Insulated brickwork. with expanded polystyrene 200mm thick; vertical straight wall complete with accessories .; Common brickwork. 150mm thick; vertical straight wall complete with accessories.; Two Layers of Bituminous Coating [3560.91]; 20x20 Approved Polysulfide Joint Sealant [37.73]; Skilled Labor [160 h]; Unskilled Labor [80 h] | 106,201.09 | GR&FE | CON | NORTH |
| CO-SU-FE-N-AR-110 |  | External plastering to walls and columns | 7d | 2026-08-11 | 2026-08-19 | CO-SU-FE-N-AR-100, CO-SU-FE-N-CI-140, CO-SU-FE-N-EL-200, CO-SU-FE-N-EL-190, CO-SU-FE-N-EL-180 | 42d | 0d | Skilled Labor [112 h]; Unskilled Labor [56 h] |  | GR&FE | CON | NORTH |
| CO-SU-FE-N-AR-120 |  | Install 50mm thick random cut stone cladding | 7d | 2026-08-19 | 2026-08-27 | CO-SU-FE-N-AR-110 | 42d | 0d | Supply and install 33mm thick Lexan cladding blue complete with necessary framings [101.36]; Supply and install 50mm thick random cut stone cladding complete with 600m [1301.53]; Supply and install External plastering to walls and columns min. 15mm thick with cement mortar of specified grade including [1524.09]; Skilled Labor [112 h]; Unskilled Labor [56 h] | 358,284.42 | GR&FE | CON | NORTH |
| CO-SU-FE-N-AR-130 |  | Install 2 coats of weatherproof paint at walls | 6d | 2026-08-27 | 2026-09-03 | CO-SU-FE-N-AR-120 | 42d | 0d | Supply and install 2 coats of weatherproof paint at walls including one prime coat and [1524.09]; Skilled Labor [96 h]; Unskilled Labor [48 h] | 42,887.92 | GR&FE | CON | NORTH |
| CO-SU-FE-N-AR-140 |  | Install Stone coping 500mm,525mm | 4d | 2026-09-03 | 2026-09-08 | CO-SU-FE-N-AR-130 | 42d | 7d | Guard room coping 350mm [5.18]; Guard room coping 450mm [2.45]; Stone coping 500mm [232.27]; Stone coping 525mm [111.27]; Skilled Labor [64 h]; Unskilled Labor [32 h] | 49,599.86 | GR&FE | CON | NORTH |
| CO-SU-FE-N-AR-150 |  | Install MODON Signage | 7d | 2026-11-11 | 2026-11-19 | CO-SU-FE-N-AR-140, CO-SU-FE-WP2-AR-260 | 42.75d | 3d | Supply and install MODON Signage with Logo Type 1 [2.18]; Supply and install MODON Signage Type 2 [2.18]; Supply and install "Triangle Style" signage [5]; Skilled Labor [112 h]; Unskilled Labor [56 h] | 43,123.64 | GR&FE | CON | NORTH |

| ID | WBS | Activity | Duration | Start | Finish | Predecessors | Total float | Free float | Resources | Cost | 01- Network | 08 Stage | 12 FENCE |
| --- | --- | --- | --- | --- | --- | --- | --- | --- | --- | --- | --- | --- | --- |
|  | 2 | **Western Fence P1 ( W01:W06 )** |  | 2026-05-20 | 2026-12-27 |  |  |  |  |  |  |  |  |
|  | 1 | **Civil Work** |  | 2026-05-20 | 2026-08-20 |  |  |  |  |  |  |  |  |
| CO-SU-FE-WP1-CI-150 |  | Excavation Work For Northern Fence | 10d | 2026-05-20 | 2026-06-06 | CO-SU-FE-N-CI-120, CO-SU-FE-N-CI-130, CO-SU-FE-N-CI-130 FF | 0d |  | Skilled Labor [80 h]; Unskilled Labor [160 h]; Excavator [80 h] |  | GR&FE | CON | W.F.P1 |
| CO-SU-FE-WP1-CI-160 |  | Pouring for Plain Concrete Northern Fence | 5d | 2026-06-06 | 2026-06-11 | CO-SU-FE-WP1-CI-150 | 0d |  | 100 mm thickness lean concrete under the foundation [254.55]; Unskilled Labor [160 h]; Carpenter [80 h]; Steel Fixer [80 h] | 71,629.09 | GR&FE | CON | W.F.P1 |
| CO-SU-FE-WP1-CI-170 |  | Pouring R.C Footing For Northern Fence | 15d | 2026-06-11 | 2026-06-29 | CO-SU-FE-WP1-CI-160, CO-SU-FE-N-CI-140 | 0d |  | Foundation [1320]; Slab on Grade; Unskilled Labor [480 h]; Carpenter [240 h]; Steel Fixer [240 h] | 795,960 | GR&FE | CON | W.F.P1 |
| CO-SU-FE-WP1-CI-180 |  | Pouring R.C Columns For Northern Fence | 16d | 2026-06-29 | 2026-07-18 | CO-SU-FE-WP1-CI-170 | 10d | 0d | Walls [356.36]; Columns [66.36]; Unskilled Labor [384 h]; Carpenter [192 h]; Steel Fixer [192 h] | 452,505.82 | GR&FE | CON | W.F.P1 |
| CO-SU-FE-WP1-CI-190 |  | Pouring Beams For Northern Fence | 19d | 2026-07-29 | 2026-08-20 | CO-SU-FE-WP1-CI-180, CO-SU-FE-WP1-AR-160 | 10d | 0d | Beams [48.73]; Unskilled Labor [608 h]; Carpenter [304 h]; Steel Fixer [304 h] | 54,847.42 | GR&FE | CON | W.F.P1 |
|  | 5 | **Finishing Work** |  | 2026-07-18 | 2026-12-27 |  |  |  |  |  |  |  |  |
|  | 3 | **Electrical Work** |  | 2026-07-29 | 2026-12-27 |  |  |  |  |  |  |  |  |
| CO-SU-FE-WP1-EL-260 |  | Trench excavation to receive 2 nos 50mm diameter PVC Conduit | 21d | 2026-07-29 | 2026-08-23 | CO-SU-FE-WP1-AR-160, CO-SU-FE-N-EL-100 | 35d | 0d | Trench excavation to receive 2 nos 50mm diameter PVC Conduit, sand bedding and embedded with sa [637.27]; Unskilled Labor [144 h]; Electrical Technician [288 h] | 23,910.47 | GR&FE | CON | W.F.P1 |
| CO-SU-FE-WP1-EL-320 |  | Trench excavation to receive 3 nos 50mm diameter PVC Conduit | 21d | 2026-07-29 | 2026-08-23 | CO-SU-FE-WP1-EL-260 SS, CO-SU-FE-N-EL-110 | 35d | 0d | 800mm depth minimum Trench excavation to receive 3 nos 50mm diameter PVC Conduit with spacer, sand bedding an [272.73]; Unskilled Labor [152 h]; Electrical Technician [304 h] | 10,963.64 | GR&FE | CON | W.F.P1 |
| CO-SU-FE-WP1-EL-300 |  | Fixing of Control cable,CAT6A cable | 14d | 2026-08-23 | 2026-09-08 | CO-SU-FE-WP1-EL-260, CO-SU-FE-WP1-EL-320, CO-SU-FE-N-EL-120 | 42d | 7d | Control cable [565.45]; CAT6A cable [565.45]; Unskilled Labor [112 h]; Electrical Technician [224 h] | 5,682.82 | GR&FE | CON | W.F.P1 |
| CO-SU-FE-WP1-EL-310 |  | Install 800mm x 800mm x 800mm height concrete handhole | 21d | 2026-08-23 | 2026-09-16 | CO-SU-FE-WP1-EL-260, CO-SU-FE-WP1-EL-320, CO-SU-FE-N-EL-130, CO-SU-FE-N-EL-210 | 35d | 0d | Supply and install 800mm x 800mm x 800mm height concrete handhole with bituminous paint all aroun [3.45]; Unskilled Labor [128 h]; Electrical Technician [256 h] | 5,943.75 | GR&FE | CON | W.F.P1 |
| CO-SU-FE-WP1-EL-330 |  | Hot dipped galvanized cable conduits for CAT6A cable and Control Cables embedded to wall | 14d | 2026-08-23 | 2026-09-08 | CO-SU-FE-WP1-EL-260, CO-SU-FE-WP1-EL-320, CO-SU-FE-N-EL-140 | 42d | 7d | Hot dipped galvanized cable conduits for CAT6A cable and Control Cables embedded to wall [76.36]; 400V, 3PH, 60Hz lighting control panel (LCP-02) [0.18]; Unskilled Labor [112 h]; Electrical Technician [224 h] | 7,728.27 | GR&FE | CON | W.F.P1 |
| CO-SU-FE-WP1-EL-280 |  | Fixing Earthing Work (Earth Pit,Grounding rod,Tinned Copper wire) | 14d | 2026-09-16 | 2026-10-04 | CO-SU-FE-WP1-EL-300, CO-SU-FE-WP1-EL-310, CO-SU-FE-WP1-EL-330, CO-SU-FE-N-EL-150, CO-SU-FE-N-AR-140, CO-SU-FE-N-EL-210 | 35d | 0d | Earth Pit [3.09]; Grounding rod 20mmX3m [1.64]; Grounding rod with Pit 20mmX3m [0.73]; Earthing Bar [0.55]; 120mm2 Tinned copper wire [36.36]; Unskilled Labor [112 h]; Electrical Technician [224 h] | 3,495.82 | GR&FE | CON | W.F.P1 |
| CO-SU-FE-WP1-EL-340 |  | Field Equipment Cabinet enclosed outdoor complete with precast concrete footing, | 9d | 2026-10-04 | 2026-10-14 | CO-SU-FE-WP1-EL-280, CO-SU-FE-N-EL-160 | 35d | 0d | Field Equipment Cabinet enclosed outdoor complete with precast concrete footing, suitable for parame [3.45]; Unskilled Labor [72 h]; Electrical Technician [144 h] | 21,367.88 | GR&FE | CON | W.F.P1 |
| CO-SU-FE-WP1-EL-350 |  | Fence Lightining 400V, 3PH, 60Hz lighting control panel (LCP-02) | 9d | 2026-10-04 | 2026-10-14 | CO-SU-FE-WP1-EL-280, CO-SU-FE-N-EL-170 | 35d | 0d | Unskilled Labor [72 h]; Electrical Technician [144 h] |  | GR&FE | CON | W.F.P1 |
| CO-SU-FE-WP1-EL-360 |  | Install of direct buried armored cable 4C-16mm2 ,10mm2 | 10d | 2026-10-14 | 2026-10-26 | CO-SU-FE-WP1-EL-340, CO-SU-FE-WP1-EL-350, CO-SU-FE-N-EL-180 | 35d | 0d | 4C-16mm2 CU/XLPE/PVC direct buried armored cable [236.36]; 4C-10mm2 CU/XLPE/PVC direct buried armored cable [154.55]; Unskilled Labor [80 h]; Electrical Technician [160 h] | 14,934.91 | GR&FE | CON | W.F.P1 |
| CO-SU-FE-WP1-EL-370 |  | Install 16mm2,10mm2 CU/PVC wire | 10d | 2026-10-14 | 2026-10-26 | CO-SU-FE-WP1-EL-340, CO-SU-FE-WP1-EL-350, CO-SU-FE-N-EL-190 | 35d | 0d | 16mm2 CU/PVC wire [236.36]; 10mm2 CU/PVC wire [154.55]; Unskilled Labor [80 h]; Electrical Technician [160 h] | 2,673.91 | GR&FE | CON | W.F.P1 |
| CO-SU-FE-WP1-EL-390 |  | FEC-CCTV ( 4C-16mm2 CU/XLPE/PVC direct buried armored cable,16mm2 CU/PVC wire | 9d | 2026-10-14 | 2026-10-25 | CO-SU-FE-WP1-EL-340, CO-SU-FE-WP1-EL-350, CO-SU-FE-N-EL-200 | 36d | 1d | 4C-16mm2 CU/XLPE/PVC direct buried armored cable [741.82]; 16mm2 CU/PVC wire [741.82]; Unskilled Labor [72 h]; Electrical Technician [144 h] | 34,791.27 | GR&FE | CON | W.F.P1 |
| CO-SU-FE-WP1-EL-250 |  | Junction Box for lighting fixture | 11d | 2026-10-26 | 2026-11-08 | CO-SU-FE-WP1-EL-360, CO-SU-FE-WP1-EL-370, CO-SU-FE-N-EL-210 | 44d | 1d | Junction Box for lighting fixture [24.73]; Unskilled Labor [64 h]; Electrical Technician [128 h] | 2,037.77 | GR&FE | CON | W.F.P1 |
| CO-SU-FE-WP1-EL-290 |  | IR Intrusion Detection System Quad Beams | 7d | 2026-12-09 | 2026-12-17 | CO-SU-FE-WP1-EL-360, CO-SU-FE-WP1-EL-370, CO-SU-FE-WP1-EL-390, CO-SU-FE-WP1-EL-250, CO-SU-FE-WP1-AR-190, CO-SU-FE-WP1-AR-200, CO-SU-FE-WP1-AR-180, CO-SU-FE-N-EL-220 | 21d | 0d | IR Intrusion Detection System Quad Beams (Tx & Rx) (SL-350 QDM) [10.91]; Unskilled Labor [56 h]; Electrical Technician [112 h] | 77,008.58 | GR&FE | CON | W.F.P1 |
| CO-SU-FE-WP1-EL-380 |  | Install of 38W, 230V, 1PH, 60Hz fence, led linear uplight lighting, IP66 | 7d | 2026-12-09 | 2026-12-17 | CO-SU-FE-WP1-EL-370, CO-SU-FE-WP1-EL-390, CO-SU-FE-WP1-EL-250, CO-SU-FE-WP1-AR-180, CO-SU-FE-WP1-AR-190, CO-SU-FE-WP1-AR-200, CO-SU-FE-N-EL-220 | 21d | 1d | 38W, 230V, 1PH, 60Hz fence, led linear uplight lighting, IP66 [24.73]; Unskilled Labor [56 h]; Electrical Technician [112 h] | 11,332.01 | GR&FE | CON | W.F.P1 |
| CO-SU-FE-WP1-EL-270 |  | Install, fixings, testing and commissioning 80W LED | 7d | 2026-12-19 | 2026-12-27 | CO-SU-FE-WP1-EL-290, CO-SU-FE-WP1-EL-380, CO-SU-FE-N-EL-240 | 20d | 0d | Supply, Install, fixings, testing and commissioning 80W LED Projector waterproof DJ effect light including c [0.55]; Unskilled Labor [56 h]; Electrical Technician [112 h] | 496.65 | GR&FE | CON | W.F.P1 |

| ID | WBS | Activity | Duration | Start | Finish | Predecessors | Total float | Free float | Resources | Cost | 01- Network | 08 Stage | 12 FENCE |
| --- | --- | --- | --- | --- | --- | --- | --- | --- | --- | --- | --- | --- | --- |
|  | 4 | **Architictural work** |  | 2026-07-18 | 2026-12-02 |  |  |  |  |  |  |  |  |
| CO-SU-FE-WP1-AR-160 |  | Install Brick Work For Northern Fence | 10d | 2026-07-18 | 2026-07-29 | CO-SU-FE-WP1-CI-180 | 10d | 0d | Common brickwork. 300mm thick; vertical straight wall complete with accessories. [1595.45]; Insulated brickwork. with expanded polystyrene 200mm thick; vertical straight wall complete with accessories .; Common brickwork. 150mm thick; vertical straight wall complete with accessories.; Two Layers of Bituminous Coating [7121.82]; 20x20 Approved Polysulfide Joint Sealant [75.45]; Skilled Labor [160 h]; Unskilled Labor [80 h] | 212,402.18 | GR&FE | CON | W.F.P1 |
| CO-SU-FE-WP1-AR-170 |  | External plastering to walls and columns | 7d | 2026-10-26 | 2026-11-03 | CO-SU-FE-WP1-AR-160, CO-SU-FE-WP1-CI-190, CO-SU-FE-WP1-EL-390, CO-SU-FE-WP1-EL-370, CO-SU-FE-WP1-EL-360 | 35d | 0d | Skilled Labor [112 h]; Unskilled Labor [56 h] |  | GR&FE | CON | W.F.P1 |
| CO-SU-FE-WP1-AR-180 |  | Install 50mm thick random cut stone cladding | 7d | 2026-11-03 | 2026-11-11 | CO-SU-FE-WP1-AR-170 | 35d | 0d | Supply and install 33mm thick Lexan cladding blue complete with necessary framings [202.72]; Supply and install 50mm thick random cut stone cladding complete with 600m [2603.06]; Supply and install External plastering to walls and columns min. 15mm thick with cement mortar of specified grade including [3048.18]; Skilled Labor [112 h]; Unskilled Labor [56 h] | 716,568.83 | GR&FE | CON | W.F.P1 |
| CO-SU-FE-WP1-AR-190 |  | Install 2 coats of weatherproof paint at walls | 6d | 2026-11-11 | 2026-11-18 | CO-SU-FE-WP1-AR-180 | 35d | 0d | Supply and install 2 coats of weatherproof paint at walls including one prime coat and [3048.18]; Skilled Labor [96 h]; Unskilled Labor [48 h] | 85,775.84 | GR&FE | CON | W.F.P1 |
| CO-SU-FE-WP1-AR-200 |  | Install Stone coping 500mm,525mm | 4d | 2026-11-18 | 2026-11-23 | CO-SU-FE-WP1-AR-190 | 35d | 0d | Guard room coping 350mm [10.36]; Guard room coping 450mm [4.91]; Stone coping 500mm [464.55]; Stone coping 525mm [222.55]; Skilled Labor [64 h]; Unskilled Labor [32 h] | 99,199.71 | GR&FE | CON | W.F.P1 |
| CO-SU-FE-WP1-AR-210 |  | Install MODON Signage | 8d | 2026-11-23 | 2026-12-02 | CO-SU-FE-WP1-AR-200, CO-SU-FE-N-AR-150 | 39.75d | 0d | Supply and install MODON Signage with Logo Type 1 [4.36]; Supply and install MODON Signage Type 2 [4.36]; Supply and install "Triangle Style" signage [10]; Skilled Labor [96 h]; Unskilled Labor [48 h] | 86,247.27 | GR&FE | CON | W.F.P1 |
|  | 3 | **Western Fence P2 ( W07:W12 )** |  | 2026-06-11 | 2027-01-04 |  |  |  |  |  |  |  |  |
|  | 1 | **Civil Work** |  | 2026-06-11 | 2026-08-29 |  |  |  |  |  |  |  |  |
| CO-SU-FE-WP2-CI-200 |  | Excavation Work For Northern Fence | 5d | 2026-06-11 | 2026-06-17 | CO-SU-FE-WP1-CI-170 SS | 0d |  | Skilled Labor [40 h]; Unskilled Labor [80 h]; Excavator [40 h] |  | GR&FE | CON | W.F.P2 |
| CO-SU-FE-WP2-CI-210 |  | Pouring for Plain Concrete Northern Fence | 5d | 2026-06-17 | 2026-06-23 | CO-SU-FE-WP2-CI-200 | 0d |  | 100 mm thickness lean concrete under the foundation [254.55]; Unskilled Labor [160 h]; Carpenter [80 h]; Steel Fixer [80 h] | 71,629.09 | GR&FE | CON | W.F.P2 |
| CO-SU-FE-WP2-CI-220 |  | Pouring R.C Footing For Northern Fence | 10d | 2026-06-23 | 2026-07-05 | CO-SU-FE-WP2-CI-210 | 0d |  | Foundation [1320]; Slab on Grade; Unskilled Labor [320 h]; Carpenter [160 h]; Steel Fixer [160 h] | 795,960 | GR&FE | CON | W.F.P2 |
| CO-SU-FE-WP2-CI-230 |  | Pouring R.C Columns For Northern Fence | 9d | 2026-07-05 | 2026-07-15 | CO-SU-FE-WP2-CI-220 | 21d | 0d | Walls [356.36]; Columns [66.36]; Unskilled Labor [288 h]; Carpenter [144 h]; Steel Fixer [144 h] | 452,505.82 | GR&FE | CON | W.F.P2 |
| CO-SU-FE-WP2-CI-240 |  | Pouring Beams For Northern Fence | 7d | 2026-08-20 | 2026-08-29 | CO-SU-FE-WP2-CI-230, CO-SU-FE-WP2-AR-220, CO-SU-FE-WP1-CI-190 | 10d | 0d | Beams [48.73]; Unskilled Labor [224 h]; Carpenter [112 h]; Steel Fixer [112 h] | 54,847.42 | GR&FE | CON | W.F.P2 |
|  | 5 | **Finishing Work** |  | 2026-07-15 | 2027-01-04 |  |  |  |  |  |  |  |  |
|  | 3 | **Electrical Work** |  | 2026-08-08 | 2027-01-04 |  |  |  |  |  |  |  |  |
| CO-SU-FE-WP2-EL-410 |  | Trench excavation to receive 2 nos 50mm diameter PVC Conduit | 4d | 2026-08-08 | 2026-08-12 | CO-SU-FE-WP2-AR-220 | 42.75d | 0d | Trench excavation to receive 2 nos 50mm diameter PVC Conduit, sand bedding and embedded with sa [637.27]; Unskilled Labor [32 h]; Electrical Technician [64 h] | 23,910.47 | GR&FE | CON | W.F.P2 |
| CO-SU-FE-WP2-EL-470 |  | Trench excavation to receive 3 nos 50mm diameter PVC Conduit | 6d | 2026-08-08 | 2026-08-15 | CO-SU-FE-WP2-EL-410 SS | 42.75d | 0d | 800mm depth minimum Trench excavation to receive 3 nos 50mm diameter PVC Conduit with spacer, sand bedding an [272.73]; Unskilled Labor [48 h]; Electrical Technician [96 h] | 10,963.64 | GR&FE | CON | W.F.P2 |
| CO-SU-FE-WP2-EL-450 |  | Fixing of Control cable,CAT6A cable | 7d | 2026-08-15 | 2026-08-23 | CO-SU-FE-WP2-EL-410, CO-SU-FE-WP2-EL-470 | 42.75d | 0d | Control cable [565.45]; CAT6A cable [565.45]; Unskilled Labor [56 h]; Electrical Technician [112 h] | 5,682.82 | GR&FE | CON | W.F.P2 |
| CO-SU-FE-WP2-EL-460 |  | Install 800mm x 800mm x 800mm height concrete handhole | 7d | 2026-08-15 | 2026-08-23 | CO-SU-FE-WP2-EL-410, CO-SU-FE-WP2-EL-470 | 42.75d | 0d | Supply and install 800mm x 800mm x 800mm height concrete handhole with bituminous paint all aroun [3.45]; Unskilled Labor [56 h]; Electrical Technician [112 h] | 5,943.75 | GR&FE | CON | W.F.P2 |
| CO-SU-FE-WP2-EL-480 |  | Hot dipped galvanized cable conduits for CAT6A cable and Control Cables embedded to wall | 7d | 2026-08-15 | 2026-08-23 | CO-SU-FE-WP2-EL-410, CO-SU-FE-WP2-EL-470 | 42.75d | 0d | Hot dipped galvanized cable conduits for CAT6A cable and Control Cables embedded to wall [76.36]; 400V, 3PH, 60Hz lighting control panel (LCP-02) [0.18]; Unskilled Labor [56 h]; Electrical Technician [112 h] | 7,728.27 | GR&FE | CON | W.F.P2 |
| CO-SU-FE-WP2-EL-430 |  | Fixing Earthing Work (Earth Pit,Grounding rod,Tinned Copper wire) | 6d | 2026-08-23 | 2026-08-30 | CO-SU-FE-WP2-EL-450, CO-SU-FE-WP2-EL-460, CO-SU-FE-WP2-EL-480 | 42.75d | 0d | Earth Pit [3.09]; Grounding rod 20mmX3m [1.64]; Grounding rod with Pit 20mmX3m [0.73]; Earthing Bar [0.55]; 120mm2 Tinned copper wire [36.36]; Unskilled Labor [48 h]; Electrical Technician [96 h] | 3,495.82 | GR&FE | CON | W.F.P2 |
| CO-SU-FE-WP2-EL-490 |  | Field Equipment Cabinet enclosed outdoor complete with precast concrete footing, | 4d | 2026-08-30 | 2026-09-03 | CO-SU-FE-WP2-EL-430 | 42.75d | 0d | Field Equipment Cabinet enclosed outdoor complete with precast concrete footing, suitable for parame [3.45]; Unskilled Labor [32 h]; Electrical Technician [64 h] | 21,367.88 | GR&FE | CON | W.F.P2 |
| CO-SU-FE-WP2-EL-500 |  | Fence Lightining 400V, 3PH, 60Hz lighting control panel (LCP-02) | 4d | 2026-08-30 | 2026-09-03 | CO-SU-FE-WP2-EL-430 | 42.75d | 0d | Unskilled Labor [32 h]; Electrical Technician [64 h] |  | GR&FE | CON | W.F.P2 |
| CO-SU-FE-WP2-EL-510 |  | Install of direct buried armored cable 4C-16mm2 ,10mm2 | 7d | 2026-09-03 | 2026-09-12 | CO-SU-FE-WP2-EL-490, CO-SU-FE-WP2-EL-500 | 43d | 0d | 4C-16mm2 CU/XLPE/PVC direct buried armored cable [236.36]; 4C-10mm2 CU/XLPE/PVC direct buried armored cable [154.55]; Unskilled Labor [56 h]; Electrical Technician [112 h] | 14,934.91 | GR&FE | CON | W.F.P2 |
| CO-SU-FE-WP2-EL-520 |  | Install 16mm2,10mm2 CU/PVC wire | 7d | 2026-09-03 | 2026-09-12 | CO-SU-FE-WP2-EL-490, CO-SU-FE-WP2-EL-500 | 43d | 0d | 16mm2 CU/PVC wire [236.36]; 10mm2 CU/PVC wire [154.55]; Unskilled Labor [56 h]; Electrical Technician [112 h] | 2,673.91 | GR&FE | CON | W.F.P2 |
| CO-SU-FE-WP2-EL-540 |  | FEC-CCTV ( 4C-16mm2 CU/XLPE/PVC direct buried armored cable,16mm2 CU/PVC wire | 8d | 2026-09-03 | 2026-09-13 | CO-SU-FE-WP2-EL-490, CO-SU-FE-WP2-EL-500 | 42.75d | 0d | 4C-16mm2 CU/XLPE/PVC direct buried armored cable [741.82]; 16mm2 CU/PVC wire [741.82]; Unskilled Labor [64 h]; Electrical Technician [128 h] | 34,791.27 | GR&FE | CON | W.F.P2 |
| CO-SU-FE-WP2-EL-400 |  | Junction Box for lighting fixture | 3d | 2026-09-12 | 2026-09-15 | CO-SU-FE-WP2-EL-510, CO-SU-FE-WP2-EL-520 | 43d | 1d | Junction Box for lighting fixture [24.73]; Unskilled Labor [24 h]; Electrical Technician [48 h] | 2,037.77 | GR&FE | CON | W.F.P2 |
| CO-SU-FE-WP2-EL-440 |  | IR Intrusion Detection System Quad Beams | 7d | 2026-12-17 | 2026-12-26 | CO-SU-FE-WP2-EL-510, CO-SU-FE-WP2-EL-520, CO-SU-FE-WP2-EL-540, CO-SU-FE-WP2-EL-400, CO-SU-FE-WP2-AR-250, CO-SU-FE-WP2-AR-260, CO-SU-FE-WP2-AR-240, CO-SU-FE-WP1-EL-290 | 21d | 0d | IR Intrusion Detection System Quad Beams (Tx & Rx) (SL-350 QDM) [10.91]; Unskilled Labor [56 h]; Electrical Technician [112 h] | 77,008.58 | GR&FE | CON | W.F.P2 |
| CO-SU-FE-WP2-EL-530 |  | Install of 38W, 230V, 1PH, 60Hz fence, led linear uplight lighting, IP66 | 7d | 2026-12-17 | 2026-12-26 | CO-SU-FE-WP2-EL-520, CO-SU-FE-WP2-EL-540, CO-SU-FE-WP2-EL-400, CO-SU-FE-WP2-AR-240, CO-SU-FE-WP2-AR-250, CO-SU-FE-WP2-AR-260, CO-SU-FE-WP1-EL-290 | 21d | 1d | 38W, 230V, 1PH, 60Hz fence, led linear uplight lighting, IP66 [24.73]; Unskilled Labor [56 h]; Electrical Technician [112 h] | 11,332.01 | GR&FE | CON | W.F.P2 |
| CO-SU-FE-WP2-EL-420 |  | Install, fixings, testing and commissioning 80W LED | 7d | 2026-12-27 | 2027-01-04 | CO-SU-FE-WP2-EL-440, CO-SU-FE-WP2-EL-530, CO-SU-FE-WP1-EL-270 | 20d | 0d | Supply, Install, fixings, testing and commissioning 80W LED Projector waterproof DJ effect light including c [0.55]; Unskilled Labor [56 h]; Electrical Technician [112 h] | 496.65 | GR&FE | CON | W.F.P2 |

| ID | WBS | Activity | Duration | Start | Finish | Predecessors | Total float | Free float | Resources | Cost | 01- Network | 08 Stage | 12 FENCE |
| --- | --- | --- | --- | --- | --- | --- | --- | --- | --- | --- | --- | --- | --- |
|  | 4 | **Architictural work** |  | 2026-07-15 | 2026-12-12 |  |  |  |  |  |  |  |  |
| CO-SU-FE-WP2-AR-220 |  | Install Brick Work For Northern Fence | 20d | 2026-07-15 | 2026-08-08 | CO-SU-FE-WP2-CI-230 | 21d | 0d | Common brickwork. 300mm thick; vertical straight wall complete with accessories. [1595.45]; Insulated brickwork. with expanded polystyrene 200mm thick; vertical straight wall complete with accessories .; Common brickwork. 150mm thick; vertical straight wall complete with accessories.; Two Layers of Bituminous Coating [7121.82]; 20x20 Approved Polysulfide Joint Sealant [75.45]; Skilled Labor [320 h]; Unskilled Labor [160 h] | 212,402.18 | GR&FE | CON | W.F.P2 |
| CO-SU-FE-WP2-AR-230 |  | External plastering to walls and columns | 15d | 2026-09-13 | 2026-10-01 | CO-SU-FE-WP2-AR-220, CO-SU-FE-WP2-CI-240, CO-SU-FE-WP2-EL-540, CO-SU-FE-WP2-EL-520, CO-SU-FE-WP2-EL-510 | 42.75d | 0d | Skilled Labor [240 h]; Unskilled Labor [120 h] |  | GR&FE | CON | W.F.P2 |
| CO-SU-FE-WP2-AR-240 |  | Install 50mm thick random cut stone cladding | 15d | 2026-10-01 | 2026-10-19 | CO-SU-FE-WP2-AR-230 | 42.75d | 0d | Supply and install 33mm thick Lexan cladding blue complete with necessary framings [202.72]; Supply and install 50mm thick random cut stone cladding complete with 600m [2603.06]; Supply and install External plastering to walls and columns min. 15mm thick with cement mortar of specified grade including [3048.18]; Skilled Labor [240 h]; Unskilled Labor [120 h] | 716,568.83 | GR&FE | CON | W.F.P2 |
| CO-SU-FE-WP2-AR-250 |  | Install 2 coats of weatherproof paint at walls | 10d | 2026-10-19 | 2026-10-31 | CO-SU-FE-WP2-AR-240 | 42.75d | 0d | Supply and install 2 coats of weatherproof paint at walls including one prime coat and [3048.18]; Skilled Labor [160 h]; Unskilled Labor [80 h] | 85,775.84 | GR&FE | CON | W.F.P2 |
| CO-SU-FE-WP2-AR-260 |  | Install Stone coping 500mm,525mm | 10d | 2026-10-31 | 2026-11-11 | CO-SU-FE-WP2-AR-250 | 42.75d | 0d | Guard room coping 350mm [10.36]; Guard room coping 450mm [4.91]; Stone coping 500mm [464.55]; Stone coping 525mm [222.55]; Skilled Labor [160 h]; Unskilled Labor [80 h] | 99,199.71 | GR&FE | CON | W.F.P2 |
| CO-SU-FE-WP2-AR-270 |  | Install MODON Signage | 8d | 2026-12-02 | 2026-12-12 | CO-SU-FE-WP2-AR-260, CO-SU-FE-WP1-AR-210 | 39.75d | 0d | Supply and install MODON Signage with Logo Type 1 [4.36]; Supply and install MODON Signage Type 2 [4.36]; Supply and install "Triangle Style" signage [10]; Skilled Labor [96 h]; Unskilled Labor [48 h] | 86,247.27 | GR&FE | CON | W.F.P2 |
|  | 4 | **Southern Fence S01:S05** |  | 2026-06-23 | 2027-01-12 |  |  |  |  |  |  |  |  |
|  | 1 | **Civil Work** |  | 2026-06-23 | 2026-09-02 |  |  |  |  |  |  |  |  |
| CO-SU-FE-S-CI-250 |  | Excavation Work For Northern Fence | 7d | 2026-06-23 | 2026-07-01 | CO-SU-FE-WP2-CI-220 SS | 0d |  | Skilled Labor [56 h]; Unskilled Labor [112 h]; Excavator [56 h] |  | GR&FE | CON | S.F |
| CO-SU-FE-S-CI-260 |  | Pouring for Plain Concrete Northern Fence | 3d | 2026-07-01 | 2026-07-05 | CO-SU-FE-S-CI-250 | 0d |  | 100 mm thickness lean concrete under the foundation [212.12]; Unskilled Labor [96 h]; Carpenter [48 h]; Steel Fixer [48 h] | 59,690.91 | GR&FE | CON | S.F |
| CO-SU-FE-S-CI-270 |  | Pouring R.C Footing For Northern Fence | 10d | 2026-07-05 | 2026-07-16 | CO-SU-FE-S-CI-260 | 0d |  | Foundation [1100]; Slab on Grade; Unskilled Labor [320 h]; Carpenter [160 h]; Steel Fixer [160 h] | 663,300 | GR&FE | CON | S.F |
| CO-SU-FE-S-CI-280 |  | Pouring R.C Columns For Northern Fence | 5d | 2026-07-16 | 2026-07-22 | CO-SU-FE-S-CI-270 | 27d | 0d | Walls [296.97]; Columns [55.3]; Unskilled Labor [160 h]; Carpenter [80 h]; Steel Fixer [80 h] | 377,088.18 | GR&FE | CON | S.F |
| CO-SU-FE-S-CI-290 |  | Pouring Beams For Northern Fence | 4d | 2026-08-29 | 2026-09-02 | CO-SU-FE-S-CI-280, CO-SU-FE-S-AR-280, CO-SU-FE-WP2-CI-240 | 10d |  | Beams [40.61]; Unskilled Labor [128 h]; Carpenter [64 h]; Steel Fixer [64 h] | 45,706.18 | GR&FE | CON | S.F |
|  | 5 | **Finishing Work** |  | 2026-07-22 | 2027-01-12 |  |  |  |  |  |  |  |  |
|  | 3 | **Electrical Work** |  | 2026-08-09 | 2027-01-12 |  |  |  |  |  |  |  |  |
| CO-SU-FE-S-EL-560 |  | Trench excavation to receive 2 nos 50mm diameter PVC Conduit | 14d | 2026-08-09 | 2026-08-25 | CO-SU-FE-S-AR-280 | 42d | 0d | Trench excavation to receive 2 nos 50mm diameter PVC Conduit, sand bedding and embedded with sa [531.06]; Unskilled Labor [32 h]; Electrical Technician [64 h] | 19,925.39 | GR&FE | CON | S.F |
| CO-SU-FE-S-EL-620 |  | Trench excavation to receive 3 nos 50mm diameter PVC Conduit | 16d | 2026-08-09 | 2026-08-27 | CO-SU-FE-S-EL-560 SS | 42d | 0d | 800mm depth minimum Trench excavation to receive 3 nos 50mm diameter PVC Conduit with spacer, sand bedding an [227.27]; Unskilled Labor [48 h]; Electrical Technician [96 h] | 9,136.36 | GR&FE | CON | S.F |
| CO-SU-FE-S-EL-600 |  | Fixing of Control cable,CAT6A cable | 17d | 2026-08-27 | 2026-09-16 | CO-SU-FE-S-EL-560, CO-SU-FE-S-EL-620 | 42d | 0d | Control cable [471.21]; CAT6A cable [471.21]; Unskilled Labor [56 h]; Electrical Technician [112 h] | 4,735.68 | GR&FE | CON | S.F |
| CO-SU-FE-S-EL-610 |  | Install 800mm x 800mm x 800mm height concrete handhole | 17d | 2026-08-27 | 2026-09-16 | CO-SU-FE-S-EL-560, CO-SU-FE-S-EL-620 | 42d | 0d | Supply and install 800mm x 800mm x 800mm height concrete handhole with bituminous paint all aroun [2.88]; Unskilled Labor [56 h]; Electrical Technician [112 h] | 4,953.13 | GR&FE | CON | S.F |
| CO-SU-FE-S-EL-630 |  | Hot dipped galvanized cable conduits for CAT6A cable and Control Cables embedded to wall | 17d | 2026-08-27 | 2026-09-16 | CO-SU-FE-S-EL-560, CO-SU-FE-S-EL-620 | 42d | 0d | Hot dipped galvanized cable conduits for CAT6A cable and Control Cables embedded to wall [63.64]; 400V, 3PH, 60Hz lighting control panel (LCP-02) [0.15]; Unskilled Labor [56 h]; Electrical Technician [112 h] | 6,440.22 | GR&FE | CON | S.F |
| CO-SU-FE-S-EL-580 |  | Fixing Earthing Work (Earth Pit,Grounding rod,Tinned Copper wire) | 6d | 2026-09-16 | 2026-09-24 | CO-SU-FE-S-EL-600, CO-SU-FE-S-EL-610, CO-SU-FE-S-EL-630, CO-SU-FE-WP2-EL-400 | 42d | 0d | Earth Pit [2.58]; Grounding rod 20mmX3m [1.36]; Grounding rod with Pit 20mmX3m [0.61]; Earthing Bar [0.45]; 120mm2 Tinned copper wire [30.3]; Unskilled Labor [48 h]; Electrical Technician [96 h] | 2,913.18 | GR&FE | CON | S.F |
| CO-SU-FE-S-EL-640 |  | Field Equipment Cabinet enclosed outdoor complete with precast concrete footing, | 4d | 2026-09-24 | 2026-09-29 | CO-SU-FE-S-EL-580 | 42d | 0d | Field Equipment Cabinet enclosed outdoor complete with precast concrete footing, suitable for parame [2.88]; Unskilled Labor [32 h]; Electrical Technician [64 h] | 17,806.57 | GR&FE | CON | S.F |
| CO-SU-FE-S-EL-650 |  | Fence Lightining 400V, 3PH, 60Hz lighting control panel (LCP-02) | 4d | 2026-09-24 | 2026-09-29 | CO-SU-FE-S-EL-580 | 42d | 0d | Unskilled Labor [32 h]; Electrical Technician [64 h] |  | GR&FE | CON | S.F |
| CO-SU-FE-S-EL-660 |  | Install of direct buried armored cable 4C-16mm2 ,10mm2 | 7d | 2026-09-29 | 2026-10-07 | CO-SU-FE-S-EL-640, CO-SU-FE-S-EL-650 | 42d | 0d | 4C-16mm2 CU/XLPE/PVC direct buried armored cable [196.97]; 4C-10mm2 CU/XLPE/PVC direct buried armored cable [128.79]; Unskilled Labor [56 h]; Electrical Technician [112 h] | 12,445.76 | GR&FE | CON | S.F |
| CO-SU-FE-S-EL-670 |  | Install 16mm2,10mm2 CU/PVC wire | 7d | 2026-09-29 | 2026-10-07 | CO-SU-FE-S-EL-640, CO-SU-FE-S-EL-650 | 42d | 0d | 16mm2 CU/PVC wire [196.97]; 10mm2 CU/PVC wire [128.79]; Unskilled Labor [56 h]; Electrical Technician [112 h] | 2,228.26 | GR&FE | CON | S.F |
| CO-SU-FE-S-EL-690 |  | FEC-CCTV ( 4C-16mm2 CU/XLPE/PVC direct buried armored cable,16mm2 CU/PVC wire | 7d | 2026-09-29 | 2026-10-07 | CO-SU-FE-S-EL-640, CO-SU-FE-S-EL-650 | 43d | 0d | 4C-16mm2 CU/XLPE/PVC direct buried armored cable [618.18]; 16mm2 CU/PVC wire [618.18]; Unskilled Labor [56 h]; Electrical Technician [112 h] | 28,992.73 | GR&FE | CON | S.F |
| CO-SU-FE-S-EL-550 |  | Junction Box for lighting fixture | 7d | 2026-10-07 | 2026-10-15 | CO-SU-FE-S-EL-660, CO-SU-FE-S-EL-670, CO-SU-FE-WP2-EL-400 | 42d | 11d | Junction Box for lighting fixture [20.61]; Unskilled Labor [24 h]; Electrical Technician [48 h] | 1,698.15 | GR&FE | CON | S.F |
| CO-SU-FE-S-EL-590 |  | IR Intrusion Detection System Quad Beams | 7d | 2026-12-26 | 2027-01-03 | CO-SU-FE-S-EL-660, CO-SU-FE-S-EL-670, CO-SU-FE-S-EL-690, CO-SU-FE-S-EL-550, CO-SU-FE-S-AR-310, CO-SU-FE-S-AR-320, CO-SU-FE-S-AR-300, CO-SU-FE-WP2-EL-440 | 21d | 0d | IR Intrusion Detection System Quad Beams (Tx & Rx) (SL-350 QDM) [9.09]; Unskilled Labor [56 h]; Electrical Technician [112 h] | 64,173.82 | GR&FE | CON | S.F |
| CO-SU-FE-S-EL-680 |  | Install of 38W, 230V, 1PH, 60Hz fence, led linear uplight lighting, IP66 | 7d | 2026-12-26 | 2027-01-03 | CO-SU-FE-S-EL-670, CO-SU-FE-S-EL-690, CO-SU-FE-S-EL-550, CO-SU-FE-S-AR-300, CO-SU-FE-S-AR-310, CO-SU-FE-S-AR-320, CO-SU-FE-WP2-EL-440 | 21d | 1d | 38W, 230V, 1PH, 60Hz fence, led linear uplight lighting, IP66 [20.61]; Unskilled Labor [56 h]; Electrical Technician [112 h] | 9,443.35 | GR&FE | CON | S.F |
| CO-SU-FE-S-EL-570 |  | Install, fixings, testing and commissioning 80W LED | 7d | 2027-01-04 | 2027-01-12 | CO-SU-FE-S-EL-590, CO-SU-FE-S-EL-680, CO-SU-FE-WP2-EL-420 | 20d | 0d | Supply, Install, fixings, testing and commissioning 80W LED Projector waterproof DJ effect light including c [0.45]; Unskilled Labor [56 h]; Electrical Technician [112 h] | 413.88 | GR&FE | CON | S.F |

| ID | WBS | Activity | Duration | Start | Finish | Predecessors | Total float | Free float | Resources | Cost | 01- Network | 08 Stage | 12 FENCE |
| --- | --- | --- | --- | --- | --- | --- | --- | --- | --- | --- | --- | --- | --- |
|  | 4 | **Architictural work** |  | 2026-07-22 | 2026-12-21 |  |  |  |  |  |  |  |  |
| CO-SU-FE-S-AR-280 |  | Install Brick Work For Northern Fence | 15d | 2026-07-22 | 2026-08-09 | CO-SU-FE-S-CI-280 | 27d | 0d | Common brickwork. 300mm thick; vertical straight wall complete with accessories. [1329.55]; Insulated brickwork. with expanded polystyrene 200mm thick; vertical straight wall complete with accessories .; Common brickwork. 150mm thick; vertical straight wall complete with accessories.; Two Layers of Bituminous Coating [5934.85]; 20x20 Approved Polysulfide Joint Sealant [62.88]; Skilled Labor [240 h]; Unskilled Labor [120 h] | 177,001.82 | GR&FE | CON | S.F |
| CO-SU-FE-S-AR-290 |  | External plastering to walls and columns | 14d | 2026-10-07 | 2026-10-24 | CO-SU-FE-S-AR-280, CO-SU-FE-S-CI-290, CO-SU-FE-S-EL-690, CO-SU-FE-S-EL-670, CO-SU-FE-S-EL-660 | 43d | 0d | Skilled Labor [224 h]; Unskilled Labor [112 h] |  | GR&FE | CON | S.F |
| CO-SU-FE-S-AR-300 |  | Install 50mm thick random cut stone cladding | 14d | 2026-10-24 | 2026-11-09 | CO-SU-FE-S-AR-290 | 43d | 0d | Supply and install 33mm thick Lexan cladding blue complete with necessary framings [168.93]; Supply and install 50mm thick random cut stone cladding complete with 600m [2169.22]; Supply and install External plastering to walls and columns min. 15mm thick with cement mortar of specified grade including [2540.15]; Skilled Labor [224 h]; Unskilled Labor [112 h] | 597,140.69 | GR&FE | CON | S.F |
| CO-SU-FE-S-AR-310 |  | Install 2 coats of weatherproof paint at walls | 8d | 2026-11-09 | 2026-11-18 | CO-SU-FE-S-AR-300, CO-SU-FE-WP1-EL-250 | 43d | 0d | Supply and install 2 coats of weatherproof paint at walls including one prime coat and [2540.15]; Skilled Labor [128 h]; Unskilled Labor [64 h] | 71,479.86 | GR&FE | CON | S.F |
| CO-SU-FE-S-AR-320 |  | Install Stone coping 500mm,525mm | 10d | 2026-11-18 | 2026-11-30 | CO-SU-FE-S-AR-310 | 43d | 10d | Guard room coping 350mm [8.64]; Guard room coping 450mm [4.09]; Stone coping 500mm [387.12]; Stone coping 525mm [185.45]; Skilled Labor [160 h]; Unskilled Labor [80 h] | 82,666.43 | GR&FE | CON | S.F |
| CO-SU-FE-S-AR-330 |  | Install MODON Signage | 8d | 2026-12-12 | 2026-12-21 | CO-SU-FE-S-AR-320, CO-SU-FE-WP2-AR-270, CO-SU-FE-WP2-AR-270 FF, CO-SU-FE-WP2-AR-270 SS | 39.75d | 5d | Supply and install MODON Signage with Logo Type 1 [3.64]; Supply and install MODON Signage Type 2 [3.64]; Supply and install "Triangle Style" signage [8.33]; Skilled Labor [96 h]; Unskilled Labor [48 h] | 71,872.73 | GR&FE | CON | S.F |
|  | 5 | **Eastern Fence P1 ( E01:E06 )** |  | 2026-07-05 | 2027-01-20 |  |  |  |  |  |  |  |  |
|  | 1 | **Civil Work** |  | 2026-07-05 | 2026-10-01 |  |  |  |  |  |  |  |  |
| CO-SU-FE-EP1-CI-300 |  | Excavation Work For Northern Fence | 15d | 2026-07-05 | 2026-07-22 | CO-SU-FE-S-CI-270 SS | 0d |  | Skilled Labor [80 h]; Unskilled Labor [160 h]; Excavator [80 h] |  | GR&FE | CON | E.F.P1 |
| CO-SU-FE-EP1-CI-310 |  | Pouring for Plain Concrete Northern Fence | 8d | 2026-07-22 | 2026-08-01 | CO-SU-FE-EP1-CI-300 | 0d |  | 100 mm thickness lean concrete under the foundation [254.55]; Unskilled Labor [160 h]; Carpenter [80 h]; Steel Fixer [80 h] | 71,629.09 | GR&FE | CON | E.F.P1 |
| CO-SU-FE-EP1-CI-320 |  | Pouring R.C Footing For Northern Fence | 20d | 2026-08-01 | 2026-08-24 | CO-SU-FE-EP1-CI-310 | 0d |  | Foundation [1320]; Slab on Grade; Unskilled Labor [480 h]; Carpenter [240 h]; Steel Fixer [240 h] | 795,960 | GR&FE | CON | E.F.P1 |
| CO-SU-FE-EP1-CI-330 |  | Pouring R.C Columns For Northern Fence | 15d | 2026-08-24 | 2026-09-10 | CO-SU-FE-EP1-CI-320 | 18d | 0d | Walls [356.36]; Columns [66.36]; Unskilled Labor [384 h]; Carpenter [192 h]; Steel Fixer [192 h] | 452,505.82 | GR&FE | CON | E.F.P1 |
| CO-SU-FE-EP1-CI-340 |  | Pouring Beams For Northern Fence | 7d | 2026-09-22 | 2026-10-01 | CO-SU-FE-EP1-CI-330, CO-SU-FE-EP1-AR-340, CO-SU-FE-S-CI-290 | 24d | 6d | Beams [48.73]; Unskilled Labor [224 h]; Carpenter [112 h]; Steel Fixer [112 h] | 54,847.42 | GR&FE | CON | E.F.P1 |
|  | 5 | **Finishing Work** |  | 2026-09-10 | 2027-01-20 |  |  |  |  |  |  |  |  |
|  | 3 | **Electrical Work** |  | 2026-09-22 | 2027-01-20 |  |  |  |  |  |  |  |  |
| CO-SU-FE-EP1-EL-710 |  | Trench excavation to receive 2 nos 50mm diameter PVC Conduit | 4d | 2026-09-22 | 2026-09-28 | CO-SU-FE-EP1-AR-340 | 18d | 0d | Trench excavation to receive 2 nos 50mm diameter PVC Conduit, sand bedding and embedded with sa [637.27]; Unskilled Labor [32 h]; Electrical Technician [64 h] | 23,910.47 | GR&FE | CON | E.F.P1 |
| CO-SU-FE-EP1-EL-770 |  | Trench excavation to receive 3 nos 50mm diameter PVC Conduit | 6d | 2026-09-22 | 2026-09-30 | CO-SU-FE-EP1-EL-710 SS | 18d | 0d | 800mm depth minimum Trench excavation to receive 3 nos 50mm diameter PVC Conduit with spacer, sand bedding an [272.73]; Unskilled Labor [48 h]; Electrical Technician [96 h] | 10,963.64 | GR&FE | CON | E.F.P1 |
| CO-SU-FE-EP1-EL-750 |  | Fixing of Control cable,CAT6A cable | 7d | 2026-09-30 | 2026-10-08 | CO-SU-FE-EP1-EL-710, CO-SU-FE-EP1-EL-770 | 18d | 0d | Control cable [565.45]; CAT6A cable [565.45]; Unskilled Labor [56 h]; Electrical Technician [112 h] | 5,682.82 | GR&FE | CON | E.F.P1 |
| CO-SU-FE-EP1-EL-760 |  | Install 800mm x 800mm x 800mm height concrete handhole | 7d | 2026-09-30 | 2026-10-08 | CO-SU-FE-EP1-EL-710, CO-SU-FE-EP1-EL-770 | 18d | 0d | Supply and install 800mm x 800mm x 800mm height concrete handhole with bituminous paint all aroun [3.45]; Unskilled Labor [56 h]; Electrical Technician [112 h] | 5,943.75 | GR&FE | CON | E.F.P1 |
| CO-SU-FE-EP1-EL-780 |  | Hot dipped galvanized cable conduits for CAT6A cable and Control Cables embedded to wall | 7d | 2026-09-30 | 2026-10-08 | CO-SU-FE-EP1-EL-710, CO-SU-FE-EP1-EL-770 | 18d | 0d | Hot dipped galvanized cable conduits for CAT6A cable and Control Cables embedded to wall [76.36]; 400V, 3PH, 60Hz lighting control panel (LCP-02) [0.18]; Unskilled Labor [56 h]; Electrical Technician [112 h] | 7,728.27 | GR&FE | CON | E.F.P1 |
| CO-SU-FE-EP1-EL-730 |  | Fixing Earthing Work (Earth Pit,Grounding rod,Tinned Copper wire) | 6d | 2026-10-08 | 2026-10-15 | CO-SU-FE-EP1-EL-750, CO-SU-FE-EP1-EL-760, CO-SU-FE-EP1-EL-780, CO-SU-FE-EP1-CI-340 | 18d | 0d | Earth Pit [3.09]; Grounding rod 20mmX3m [1.64]; Grounding rod with Pit 20mmX3m [0.73]; Earthing Bar [0.55]; 120mm2 Tinned copper wire [36.36]; Unskilled Labor [48 h]; Electrical Technician [96 h] | 3,495.82 | GR&FE | CON | E.F.P1 |
| CO-SU-FE-EP1-EL-790 |  | Field Equipment Cabinet enclosed outdoor complete with precast concrete footing, | 4d | 2026-10-15 | 2026-10-20 | CO-SU-FE-EP1-EL-730 | 18d | 0d | Field Equipment Cabinet enclosed outdoor complete with precast concrete footing, suitable for parame [3.45]; Unskilled Labor [32 h]; Electrical Technician [64 h] | 21,367.88 | GR&FE | CON | E.F.P1 |
| CO-SU-FE-EP1-EL-800 |  | Fence Lightining 400V, 3PH, 60Hz lighting control panel (LCP-02) | 4d | 2026-10-15 | 2026-10-20 | CO-SU-FE-EP1-EL-730 | 18d | 0d | Unskilled Labor [32 h]; Electrical Technician [64 h] |  | GR&FE | CON | E.F.P1 |
| CO-SU-FE-EP1-EL-810 |  | Install of direct buried armored cable 4C-16mm2 ,10mm2 | 7d | 2026-10-20 | 2026-10-28 | CO-SU-FE-EP1-EL-790, CO-SU-FE-EP1-EL-800 | 27d | 0d | 4C-16mm2 CU/XLPE/PVC direct buried armored cable [236.36]; 4C-10mm2 CU/XLPE/PVC direct buried armored cable [154.55]; Unskilled Labor [56 h]; Electrical Technician [112 h] | 14,934.91 | GR&FE | CON | E.F.P1 |
| CO-SU-FE-EP1-EL-820 |  | Install 16mm2,10mm2 CU/PVC wire | 7d | 2026-10-20 | 2026-10-28 | CO-SU-FE-EP1-EL-790, CO-SU-FE-EP1-EL-800 | 27d | 0d | 16mm2 CU/PVC wire [236.36]; 10mm2 CU/PVC wire [154.55]; Unskilled Labor [56 h]; Electrical Technician [112 h] | 2,673.91 | GR&FE | CON | E.F.P1 |
| CO-SU-FE-EP1-EL-840 |  | FEC-CCTV ( 4C-16mm2 CU/XLPE/PVC direct buried armored cable,16mm2 CU/PVC wire | 7d | 2026-10-20 | 2026-10-28 | CO-SU-FE-EP1-EL-790, CO-SU-FE-EP1-EL-800 | 18d | 0d | 4C-16mm2 CU/XLPE/PVC direct buried armored cable [741.82]; 16mm2 CU/PVC wire [741.82]; Unskilled Labor [56 h]; Electrical Technician [112 h] | 34,791.27 | GR&FE | CON | E.F.P1 |
| CO-SU-FE-EP1-EL-700 |  | Junction Box for lighting fixture | 3d | 2026-10-28 | 2026-11-01 | CO-SU-FE-EP1-EL-810, CO-SU-FE-EP1-EL-820, CO-SU-FE-S-EL-550 | 31d |  | Junction Box for lighting fixture [24.73]; Unskilled Labor [24 h]; Electrical Technician [48 h] | 2,037.77 | GR&FE | CON | E.F.P1 |
| CO-SU-FE-EP1-EL-740 |  | IR Intrusion Detection System Quad Beams | 7d | 2027-01-03 | 2027-01-11 | CO-SU-FE-EP1-EL-810, CO-SU-FE-EP1-EL-820, CO-SU-FE-EP1-EL-840, CO-SU-FE-EP1-EL-700, CO-SU-FE-EP1-AR-370, CO-SU-FE-EP1-AR-380, CO-SU-FE-EP1-AR-360, CO-SU-FE-S-EL-590 | 21d | 1d | IR Intrusion Detection System Quad Beams (Tx & Rx) (SL-350 QDM) [10.91]; Unskilled Labor [56 h]; Electrical Technician [112 h] | 77,008.58 | GR&FE | CON | E.F.P1 |
| CO-SU-FE-EP1-EL-830 |  | Install of 38W, 230V, 1PH, 60Hz fence, led linear uplight lighting, IP66 | 7d | 2027-01-03 | 2027-01-11 | CO-SU-FE-EP1-EL-820, CO-SU-FE-EP1-EL-840, CO-SU-FE-EP1-EL-700, CO-SU-FE-EP1-AR-360, CO-SU-FE-EP1-AR-370, CO-SU-FE-EP1-AR-380, CO-SU-FE-S-EL-590 | 21d | 1d | 38W, 230V, 1PH, 60Hz fence, led linear uplight lighting, IP66 [24.73]; Unskilled Labor [56 h]; Electrical Technician [112 h] | 11,332.01 | GR&FE | CON | E.F.P1 |
| CO-SU-FE-EP1-EL-720 |  | Install, fixings, testing and commissioning 80W LED | 7d | 2027-01-12 | 2027-01-20 | CO-SU-FE-EP1-EL-740, CO-SU-FE-EP1-EL-830, CO-SU-FE-S-EL-570 | 20d |  | Supply, Install, fixings, testing and commissioning 80W LED Projector waterproof DJ effect light including c [0.55]; Unskilled Labor [56 h]; Electrical Technician [112 h] | 496.65 | GR&FE | CON | E.F.P1 |

| ID | WBS | Activity | Duration | Start | Finish | Predecessors | Total float | Free float | Resources | Cost | 01- Network | 08 Stage | 12 FENCE |
| --- | --- | --- | --- | --- | --- | --- | --- | --- | --- | --- | --- | --- | --- |
|  | 4 | **Architictural work** |  | 2026-09-10 | 2027-01-03 |  |  |  |  |  |  |  |  |
| CO-SU-FE-EP1-AR-340 |  | Install Brick Work For Northern Fence | 10d | 2026-09-10 | 2026-09-22 | CO-SU-FE-EP1-CI-330 | 18d | 0d | Common brickwork. 300mm thick; vertical straight wall complete with accessories. [1595.45]; Insulated brickwork. with expanded polystyrene 200mm thick; vertical straight wall complete with accessories .; Common brickwork. 150mm thick; vertical straight wall complete with accessories.; Two Layers of Bituminous Coating [7121.82]; 20x20 Approved Polysulfide Joint Sealant [75.45]; Skilled Labor [160 h]; Unskilled Labor [80 h] | 212,402.18 | GR&FE | CON | E.F.P1 |
| CO-SU-FE-EP1-AR-350 |  | External plastering to walls and columns | 10d | 2026-10-28 | 2026-11-09 | CO-SU-FE-EP1-AR-340, CO-SU-FE-EP1-CI-340, CO-SU-FE-EP1-EL-840, CO-SU-FE-EP1-EL-820, CO-SU-FE-EP1-EL-810 | 27d | 0d | Skilled Labor [112 h]; Unskilled Labor [56 h] |  | GR&FE | CON | E.F.P1 |
| CO-SU-FE-EP1-AR-360 |  | Install 50mm thick random cut stone cladding | 12d | 2026-11-09 | 2026-11-23 | CO-SU-FE-EP1-AR-350, CO-SU-FE-EP1-EL-840 | 27d | 0d | Supply and install 33mm thick Lexan cladding blue complete with necessary framings [202.72]; Supply and install 50mm thick random cut stone cladding complete with 600m [2603.06]; Supply and install External plastering to walls and columns min. 15mm thick with cement mortar of specified grade including [3048.18]; Skilled Labor [112 h]; Unskilled Labor [56 h] | 716,568.83 | GR&FE | CON | E.F.P1 |
| CO-SU-FE-EP1-AR-370 |  | Install 2 coats of weatherproof paint at walls | 14d | 2026-11-23 | 2026-12-09 | CO-SU-FE-EP1-AR-360 | 27d | 0d | Supply and install 2 coats of weatherproof paint at walls including one prime coat and [3048.18]; Skilled Labor [96 h]; Unskilled Labor [48 h] | 85,775.84 | GR&FE | CON | E.F.P1 |
| CO-SU-FE-EP1-AR-380 |  | Install Stone coping 500mm,525mm | 15d | 2026-12-09 | 2026-12-27 | CO-SU-FE-EP1-AR-370 | 27d | 0d | Guard room coping 350mm [10.36]; Guard room coping 450mm [4.91]; Stone coping 500mm [464.55]; Stone coping 525mm [222.55]; Skilled Labor [64 h]; Unskilled Labor [32 h] | 99,199.71 | GR&FE | CON | E.F.P1 |
| CO-SU-FE-EP1-AR-390 |  | Install MODON Signage | 6d | 2026-12-27 | 2027-01-03 | CO-SU-FE-EP1-AR-380, CO-SU-FE-S-AR-330 | 34.75d | 28d | Supply and install MODON Signage with Logo Type 1 [4.36]; Supply and install MODON Signage Type 2 [4.36]; Supply and install "Triangle Style" signage [10]; Skilled Labor [96 h]; Unskilled Labor [48 h] | 86,247.27 | GR&FE | CON | E.F.P1 |
|  | 6 | **Eastern Fence P2 ( E07:E13 )** |  | 2026-08-24 | 2027-02-22 |  |  |  |  |  |  |  |  |
|  | 1 | **Civil Work** |  | 2026-08-24 | 2026-12-12 |  |  |  |  |  |  |  |  |
| CO-SU-FE-EP2-CI-350 |  | Excavation Work For Northern Fence | 18d | 2026-08-24 | 2026-09-14 | CO-SU-FE-EP1-CI-320 | 0d |  | Skilled Labor [80 h]; Unskilled Labor [160 h]; Excavator [80 h] |  | GR&FE | CON | E.F.P2 |
| CO-SU-FE-EP2-CI-360 |  | Pouring for Plain Concrete Northern Fence | 15d | 2026-09-14 | 2026-10-03 | CO-SU-FE-EP2-CI-350, CO-SU-FE-S-CI-290 | 0d |  | 100 mm thickness lean concrete under the foundation [296.97]; Unskilled Labor [160 h]; Carpenter [80 h]; Steel Fixer [80 h] | 83,567.27 | GR&FE | CON | E.F.P2 |
| CO-SU-FE-EP2-CI-370 |  | Pouring R.C Footing For Northern Fence | 21d | 2026-10-03 | 2026-10-27 | CO-SU-FE-EP2-CI-360 | 0d |  | Foundation [1540]; Slab on Grade; Unskilled Labor [480 h]; Carpenter [240 h]; Steel Fixer [240 h] | 928,620 | GR&FE | CON | E.F.P2 |
| CO-SU-FE-EP2-CI-380 |  | Pouring R.C Columns For Northern Fence | 19d | 2026-10-27 | 2026-11-18 | CO-SU-FE-EP2-CI-370, CO-SU-FE-EP1-CI-330 | 0d |  | Walls [415.76]; Columns [77.42]; Unskilled Labor [384 h]; Carpenter [192 h]; Steel Fixer [192 h] | 527,923.45 | GR&FE | CON | E.F.P2 |
| CO-SU-FE-EP2-CI-390 |  | Pouring Beams For Northern Fence | 10d | 2026-11-30 | 2026-12-12 | CO-SU-FE-EP2-CI-380, CO-SU-FE-EP2-AR-400, CO-SU-FE-EP1-CI-340 | 23d |  | Beams [56.85]; Unskilled Labor [224 h]; Carpenter [112 h]; Steel Fixer [112 h] | 63,988.65 | GR&FE | CON | E.F.P2 |
|  | 5 | **Finishing Work** |  | 2026-11-18 | 2027-02-22 |  |  |  |  |  |  |  |  |
|  | 3 | **Electrical Work** |  | 2026-11-30 | 2027-02-22 |  |  |  |  |  |  |  |  |
| CO-SU-FE-EP2-EL-860 |  | Trench excavation to receive 2 nos 50mm diameter PVC Conduit | 4d | 2026-11-30 | 2026-12-05 | CO-SU-FE-EP2-AR-400 | 0d |  | Trench excavation to receive 2 nos 50mm diameter PVC Conduit, sand bedding and embedded with sa [743.48]; Unskilled Labor [32 h]; Electrical Technician [64 h] | 27,895.55 | GR&FE | CON | E.F.P2 |
| CO-SU-FE-EP2-EL-920 |  | Trench excavation to receive 3 nos 50mm diameter PVC Conduit | 6d | 2026-11-30 | 2026-12-07 | CO-SU-FE-EP2-EL-860 SS | 0d |  | 800mm depth minimum Trench excavation to receive 3 nos 50mm diameter PVC Conduit with spacer, sand bedding an [318.18]; Unskilled Labor [48 h]; Electrical Technician [96 h] | 12,790.91 | GR&FE | CON | E.F.P2 |
| CO-SU-FE-EP2-EL-900 |  | Fixing of Control cable,CAT6A cable | 7d | 2026-12-07 | 2026-12-15 | CO-SU-FE-EP2-EL-860, CO-SU-FE-EP2-EL-920, CO-SU-FE-EP1-EL-700 | 0d |  | Control cable [659.7]; CAT6A cable [659.7]; Unskilled Labor [56 h]; Electrical Technician [112 h] | 6,629.95 | GR&FE | CON | E.F.P2 |
| CO-SU-FE-EP2-EL-910 |  | Install 800mm x 800mm x 800mm height concrete handhole | 7d | 2026-12-07 | 2026-12-15 | CO-SU-FE-EP2-EL-860, CO-SU-FE-EP2-EL-920 | 0d |  | Supply and install 800mm x 800mm x 800mm height concrete handhole with bituminous paint all aroun [4.03]; Unskilled Labor [56 h]; Electrical Technician [112 h] | 6,934.38 | GR&FE | CON | E.F.P2 |
| CO-SU-FE-EP2-EL-930 |  | Hot dipped galvanized cable conduits for CAT6A cable and Control Cables embedded to wall | 7d | 2026-12-07 | 2026-12-15 | CO-SU-FE-EP2-EL-860, CO-SU-FE-EP2-EL-920 | 0d |  | Hot dipped galvanized cable conduits for CAT6A cable and Control Cables embedded to wall [89.09]; 400V, 3PH, 60Hz lighting control panel (LCP-02) [0.21]; Unskilled Labor [56 h]; Electrical Technician [112 h] | 9,016.31 | GR&FE | CON | E.F.P2 |
| CO-SU-FE-EP2-EL-880 |  | Fixing Earthing Work (Earth Pit,Grounding rod,Tinned Copper wire) | 6d | 2026-12-15 | 2026-12-22 | CO-SU-FE-EP2-EL-900, CO-SU-FE-EP2-EL-910, CO-SU-FE-EP2-EL-930 | 0d |  | Earth Pit [3.61]; Grounding rod 20mmX3m [1.91]; Grounding rod with Pit 20mmX3m [0.85]; Earthing Bar [0.64]; 120mm2 Tinned copper wire [42.42]; Unskilled Labor [48 h]; Electrical Technician [96 h] | 4,078.45 | GR&FE | CON | E.F.P2 |
| CO-SU-FE-EP2-EL-940 |  | Field Equipment Cabinet enclosed outdoor complete with precast concrete footing, | 4d | 2026-12-22 | 2026-12-27 | CO-SU-FE-EP2-EL-880 | 0d |  | Field Equipment Cabinet enclosed outdoor complete with precast concrete footing, suitable for parame [4.03]; Unskilled Labor [32 h]; Electrical Technician [64 h] | 24,929.2 | GR&FE | CON | E.F.P2 |
| CO-SU-FE-EP2-EL-950 |  | Fence Lightining 400V, 3PH, 60Hz lighting control panel (LCP-02) | 4d | 2026-12-22 | 2026-12-27 | CO-SU-FE-EP2-EL-880 | 0d |  | Unskilled Labor [32 h]; Electrical Technician [64 h] |  | GR&FE | CON | E.F.P2 |
| CO-SU-FE-EP2-EL-960 |  | Install of direct buried armored cable 4C-16mm2 ,10mm2 | 7d | 2026-12-27 | 2027-01-04 | CO-SU-FE-EP2-EL-940, CO-SU-FE-EP2-EL-950 | 0d |  | 4C-16mm2 CU/XLPE/PVC direct buried armored cable [275.76]; 4C-10mm2 CU/XLPE/PVC direct buried armored cable [180.3]; Unskilled Labor [56 h]; Electrical Technician [112 h] | 17,424.06 | GR&FE | CON | E.F.P2 |
| CO-SU-FE-EP2-EL-970 |  | Install 16mm2,10mm2 CU/PVC wire | 7d | 2026-12-27 | 2027-01-04 | CO-SU-FE-EP2-EL-940, CO-SU-FE-EP2-EL-950 | 0d |  | 16mm2 CU/PVC wire [275.76]; 10mm2 CU/PVC wire [180.3]; Unskilled Labor [56 h]; Electrical Technician [112 h] | 3,119.56 | GR&FE | CON | E.F.P2 |
| CO-SU-FE-EP2-EL-990 |  | FEC-CCTV ( 4C-16mm2 CU/XLPE/PVC direct buried armored cable,16mm2 CU/PVC wire | 7d | 2026-12-27 | 2027-01-04 | CO-SU-FE-EP2-EL-940, CO-SU-FE-EP2-EL-950 | 3d |  | 4C-16mm2 CU/XLPE/PVC direct buried armored cable [865.45]; 16mm2 CU/PVC wire [865.45]; Unskilled Labor [56 h]; Electrical Technician [112 h] | 40,589.82 | GR&FE | CON | E.F.P2 |
| CO-SU-FE-EP2-EL-850 |  | Junction Box for lighting fixture | 3d | 2027-01-04 | 2027-01-07 | CO-SU-FE-EP2-EL-960, CO-SU-FE-EP2-EL-970 | 0d |  | Junction Box for lighting fixture [28.85]; Unskilled Labor [24 h]; Electrical Technician [48 h] | 2,377.4 | GR&FE | CON | E.F.P2 |
| CO-SU-FE-EP2-EL-890 |  | IR Intrusion Detection System Quad Beams | 7d | 2027-02-04 | 2027-02-14 | CO-SU-FE-EP2-EL-960, CO-SU-FE-EP2-EL-970, CO-SU-FE-EP2-EL-990, CO-SU-FE-EP2-EL-850, CO-SU-FE-EP2-AR-430, CO-SU-FE-EP2-AR-440, CO-SU-FE-EP2-AR-420, CO-SU-FE-EP1-EL-740 | 0d |  | IR Intrusion Detection System Quad Beams (Tx & Rx) (SL-350 QDM) [12.73]; Unskilled Labor [56 h]; Electrical Technician [112 h] | 89,843.35 | GR&FE | CON | E.F.P2 |
| CO-SU-FE-EP2-EL-980 |  | Install of 38W, 230V, 1PH, 60Hz fence, led linear uplight lighting, IP66 | 7d | 2027-02-04 | 2027-02-14 | CO-SU-FE-EP2-EL-970, CO-SU-FE-EP2-EL-990, CO-SU-FE-EP2-EL-850, CO-SU-FE-EP2-AR-420, CO-SU-FE-EP2-AR-430, CO-SU-FE-EP2-AR-440, CO-SU-FE-EP1-EL-740 | 0d |  | 38W, 230V, 1PH, 60Hz fence, led linear uplight lighting, IP66 [28.85]; Unskilled Labor [56 h]; Electrical Technician [112 h] | 13,220.68 | GR&FE | CON | E.F.P2 |
| CO-SU-FE-EP2-EL-870 |  | Install, fixings, testing and commissioning 80W LED | 5.75d | 2027-02-14 | 2027-02-22 | CO-SU-FE-EP2-EL-890, CO-SU-FE-EP2-EL-980, CO-SU-FE-EP1-EL-720 | 0d |  | Supply, Install, fixings, testing and commissioning 80W LED Projector waterproof DJ effect light including c [0.64]; Unskilled Labor [48 h]; Electrical Technician [96 h] | 579.43 | GR&FE | CON | E.F.P2 |

| ID | WBS | Activity | Duration | Start | Finish | Predecessors | Total float | Free float | Resources | Cost | 01- Network | 08 Stage | 12 FENCE |
| --- | --- | --- | --- | --- | --- | --- | --- | --- | --- | --- | --- | --- | --- |
|  | 4 | **Architictural work** |  | 2026-11-18 | 2027-02-13 |  |  |  |  |  |  |  |  |
| CO-SU-FE-EP2-AR-400 |  | Install Brick Work For Northern Fence | 10d | 2026-11-18 | 2026-11-30 | CO-SU-FE-EP2-CI-380, CO-SU-FE-EP1-EL-840 | 0d |  | Common brickwork. 300mm thick; vertical straight wall complete with accessories. [1861.36]; Insulated brickwork. with expanded polystyrene 200mm thick; vertical straight wall complete with accessories .; Common brickwork. 150mm thick; vertical straight wall complete with accessories.; Two Layers of Bituminous Coating [8308.79]; 20x20 Approved Polysulfide Joint Sealant [88.03]; Skilled Labor [160 h]; Unskilled Labor [80 h] | 247,802.55 | GR&FE | CON | E.F.P2 |
| CO-SU-FE-EP2-AR-410 |  | External plastering to walls and columns | 7d | 2027-01-07 | 2027-01-16 | CO-SU-FE-EP2-AR-400, CO-SU-FE-EP2-CI-390, CO-SU-FE-EP2-EL-990, CO-SU-FE-EP2-EL-970, CO-SU-FE-EP2-EL-960, CO-SU-FE-EP2-EL-850 | 0d |  | Skilled Labor [112 h]; Unskilled Labor [56 h] |  | GR&FE | CON | E.F.P2 |
| CO-SU-FE-EP2-AR-420 |  | Install 50mm thick random cut stone cladding | 7d | 2027-01-16 | 2027-01-24 | CO-SU-FE-EP2-AR-410 | 0d |  | Supply and install 33mm thick Lexan cladding blue complete with necessary framings [236.51]; Supply and install 50mm thick random cut stone cladding complete with 600m [3036.91]; Supply and install External plastering to walls and columns min. 15mm thick with cement mortar of specified grade including [3556.21]; Skilled Labor [112 h]; Unskilled Labor [56 h] | 835,996.97 | GR&FE | CON | E.F.P2 |
| CO-SU-FE-EP2-AR-430 |  | Install 2 coats of weatherproof paint at walls | 6d | 2027-01-24 | 2027-01-31 | CO-SU-FE-EP2-AR-420 | 0d |  | Supply and install 2 coats of weatherproof paint at walls including one prime coat and [3556.21]; Skilled Labor [96 h]; Unskilled Labor [48 h] | 100,071.81 | GR&FE | CON | E.F.P2 |
| CO-SU-FE-EP2-AR-440 |  | Install Stone coping 500mm,525mm | 4d | 2027-01-31 | 2027-02-04 | CO-SU-FE-EP2-AR-430 | 0d |  | Guard room coping 350mm [12.09]; Guard room coping 450mm [5.73]; Stone coping 500mm [541.97]; Stone coping 525mm [259.64]; Skilled Labor [64 h]; Unskilled Labor [32 h] | 115,733 | GR&FE | CON | E.F.P2 |
| CO-SU-FE-EP2-AR-450 |  | Install MODON Signage | 6d | 2027-02-04 | 2027-02-13 | CO-SU-FE-EP2-AR-440, CO-SU-FE-EP1-AR-390 | 6.75d |  | Supply and install MODON Signage with Logo Type 1 [5.09]; Supply and install MODON Signage Type 2 [5.09]; Supply and install "Triangle Style" signage [11.67]; Skilled Labor [96 h]; Unskilled Labor [48 h] | 100,621.82 | GR&FE | CON | E.F.P2 |
|  | TC | **Testing and Comissioning** |  | 2026-11-10 | 2027-02-22 |  |  |  |  |  |  |  |  |
|  | INF | **Infrastructure Networks** |  | 2026-11-10 | 2027-02-22 |  |  |  |  |  |  |  |  |
|  | PW1 | **Irrigation Network** |  | 2026-12-27 | 2027-01-14 |  |  |  |  |  |  |  |  |
| T/C-IR |  | Testing and Commissioning of Irrigation Network | 16d | 2026-12-27 | 2027-01-14 | T/C-PW SS, CO-IR-TF-160, CO-TSE-TF-170, CO-LS-PL-180 | 0d |  | pipe line O.D 32 mm PN 10, in depth 0 to 1.5 m [3350]; pipe line O.D 40 mm PN 10, in depth 0 to 1.5 m [1850]; pipe line O.D 50 mm PN 10, in depth 0 to 1.5 m [250]; Gate valve 50 mm PN16 [7]; Direct Burried Gate valve 40 mm PN16 [12]; Pressure–compensating bubblers 110 Lit/Hr [850]; Flushing Bronze gate valve dia 1.5" inside PVC box [19]; Air release valve 1.5" inside PVC box [19]; Extra flexible pressure compensating on surface inline dripline`s, O.D. is 16.1 mm [12000]; Electrical Solenoid Valve ( 1.5") inside PVC box [12]; Electrical Solenoid Valve ( 2") inside PVC box [7]; Quick coupling valve 1" inside a round valve box 10" size with a manual gate valve, hose swivel and key with all accessories [53]; Advanced Irrigation controller subject to client approval, can connect with Centarl Control system [1]; Decoder cables 12 AWG between valves and controllers, The cables shall be pulled through 32Ø UPVC conduit [3500]; Preparing the irrigation program for the entire system and providing technical services for monitoring and controlling the central irrigation systems [1] | 78,029 | IR |  |  |
|  | PW11 | **TSE Network** |  | 2026-12-27 | 2027-01-14 |  |  |  |  |  |  |  |  |
| T/C-TSE-10 |  | Testing and Commissioning of TSE Network | 16d | 2026-12-27 | 2027-01-14 | CO-TSE-TF-170, T/C-SD, CO-UB-IRT-250 | 0.75d | 0d | Depth Between 0m to 1.50m [10]; Depth Between 1.50m to 2.50m [5]; Depth > 2.50m [2]; Depth Between 0m to 1.50m [920]; Depth Between 0m to 1.50m [412.98]; Depth Between 1.50m to 2.50m [45]; Depth > 2.50m [10]; Depth Between 0m to 1.50m [850]; Depth Between 1.50m to 2.50m [260]; Depth > 2.50m [25]; Depth Between 0m to 1.50m [60]; Depth Between 1.50m to 2.50m [40]; Depth > 2.50m [8]; Gate valves dia 50 mm [1]; Gate valves dia 100 mm [14]; Gate valves dia 150 mm [5]; Gate valves dia 200 mm [2]; Air valves with dia 50 mm [1]; Washout valve dia 100 mm [2]; Wash out chamber (2500x 2500mm) [2]; Air valve chamber (1000x 1000 mm) [1]; Flow meter chamber (1500x 3000 mm) [1]; Flow meter dia 150 mm [1]; Glass Fused Bolted (GLS) 1500 m3 Tank with associated accessories & manufacturer recommendation for the foundation [1] | 117,605 | TSE |  |  |
|  | PW | **Potable Water Network** |  | 2026-12-27 | 2027-01-14 |  |  |  |  |  |  |  |  |
| T/C-PW |  | Testing and Commissioning of Potable Water Network | 16d | 2026-12-27 | 2027-01-14 | T/C-SW, CO-PW-TF-110, CO-PW-TF-100, CO-PW-TF-120, CO-UB-PS-390, CO-UB-LS-470, CO-UB-LS-480, MS-CF-MV | 0d |  | Depth Between 0m to 1.50m [6]; Depth Between 1.50m to 2.50m [6]; Depth > 2.50m [2]; Depth Between 0m to 1.50m [420]; Depth Between 1.50m to 2.50m [280]; Depth > 2.50m [10]; Depth Between 0m to 1.50m [50]; Depth Between 1.50m to 2.50m [10]; Depth > 2.50m [5]; Depth Between 0m to 1.50m [320]; Depth Between 1.50m to 2.50m [1310]; Depth > 2.50m [20]; Gate valves Dia 50 mm [1]; Gate valves Dia 100 mm [12]; Gate valves Dia 150 mm [17]; Gate valves Dia 250 mm [9]; Air valves with Dia 50 mm [1]; Washout valve Dia 100 mm [2]; 3-outlet fire hydrant (2 x 2.5 inch and 1 x 4.5 inch) in the form of a separate dry vacuum cylinder, complete according to drawings. [17]; Wash out chamber (2500x 2500mm) [2]; Air valve chamber (1000x 1000 mm) [1]; Flow meter chamber (1500x 2500 mm) [1]; Flow meter dia 100 mm [1]; Glass Fused Bolted (GLS) 1500 m3 Tank with associated accessories & manufacturer recommendation for the foundation [1] | 165,461 | PW |  |  |
|  | SW | **Sewage Network** |  | 2026-11-28 | 2026-12-15 |  |  |  |  |  |  |  |  |
| T/C-SW |  | Testing and Commissioning of Sewage Network | 15d | 2026-11-28 | 2026-12-15 | T/C-SD, CO-SW-TF-100, CO-SW-TF-210, MS-CF-SW | 10d | 0d | Depth Between 0m to 1.50m [40]; Depth Between 1.50m to 2.50m [246]; Depth > 2.50m [10]; Depth Between 0m to 1.50m [22]; Depth Between 1.50m to 2.50m [1600]; Depth Between 2.50m to 3.50m [75]; Depth > 3.50m [15]; HDPE Force Main (PE 100, SDR 11, PN 16 bar) DN 160 mm diameter, in trenches depth: 0- 1.5m [25]; HDPE Force Main (PE 100, SDR 11, PN 16 bar) DN 160 mm diameter, in trenches depth: 1.51- 2.5m [40]; Depth: 0 - 1.5m [2]; Depth: 1.51 - 2.5m [35]; Depth: 2.51 - 3.5m [2]; Depth > 3.50m [1] | 73,705.2 | SW |  |  |
|  | SD | **Storm Drainage Network** |  | 2026-11-10 | 2026-11-28 |  |  |  |  |  |  |  |  |
| T/C-SD |  | Testing and Commissioning of Storm Drainage Network | 15d | 2026-11-10 | 2026-11-28 | CO-SD-ML-TF-100, CO-SD-CB-TF-160, CO-SD-MH-TF-210, CO-SD-PO-110-P2, MS-CF-SD, CO-LS-PL-180 | 10d | 0d | Depth Between 0m to 1.50m [95]; Depth Between 1.50m to 2.50m [2819]; Depth > 2.50m [15]; Depth Between 1.50m to 2.50m [548]; Depth Between 2.50m to 3.50m [439]; Depth > 3.50m [15]; Depth Between 2.50m to 3.50m [191]; Depth Between 0m to 1.50m [28]; Depth Between 1.50m to 2.50m [10]; Depth Between 2.50m to 3.50m [94]; Depth > 3.50m [7]; Depth Between 2.50m to 3.50m [121]; Depth Between 3.50m to 4.50m [371]; Depth > 4.50m [15]; Depth Between 3.50m to 4.50m [737]; Depth > 4.50m [25]; MH depth 1.5 - 2.5m [20]; MH depth 2.5 - 3.5m [17]; MH depth > 3.50m [1]; MH depth 2.5 -3.5m [2]; Single Catch Basin 1000mm x 1000mm [197]; Double Catch Basin 1200mm x 2300mm [4] | 578,359.8 | SD |  |  |
|  | SL | **Street Lighting Network** |  | 2027-01-14 | 2027-02-03 |  |  |  |  |  |  |  |  |
| T/C-SL |  | Testing and Commissioning of Street Lighting Network | 17d | 2027-01-14 | 2027-02-03 | T/C-IR, CO-SL-TF-220, CO-SL-TF-230, CO-SL-TF-200, CO-SL-TF-380, CO-SL-LP-330, MS-CF-SL, T/C-DPO | 0d |  | Road crossing ducts, 2 ways (2 x 150mm HDPE) [228.69]; Road crossing ducts, 2 ways (2 x 110mm UPVC) [90.85]; Road crossing ducts, 3 ways (3 x 110mm UPVC) [30.19]; 4C-300mm2 CU/XLPE / PVC ARMORED CABLE [70]; 4C-240mm2 CU/XLPE / PVC ARMORED CABLE [40]; 4C-185mm2 CU/XLPE / PVC ARMORED CABLE [40]; 4C-50mm2 CU/XLPE / PVC ARMORED CABLE [150]; 4C-16mm2 CU/XLPE / PVC ARMORED CABLE [3485]; 4C-16MM2 CU/XLPE / PVC CABLE [1395]; 1Cx150sq.mm2,Cu, PVC wire [75]; 1Cx120sq.mm2,Cu, PVC wire [75]; 1Cx95sq.mm,Cu, PVC wire [40]; 1Cx70sq.mm2,Cu, PVC wire [20]; 1Cx25sq.mm2,Cu, PVC wire [75]; 1Cx16sq.mm2,Cu, PVC wire [3485]; 1Cx10sq.mm2,Cu, PVC wire [50]; Supply and installation of KWH meter mounting frame including concrete block for installation of KWH meter [6]; Street Lighting panels LCP (01) [1]; Lighting poles with 1 arm, height of (12) meters, including the power distribution box, cables, and RCC foundation. [39]; Lighting poles with 2 arms, height of (12) meters, including the power distribution box, cables, and RCC foundation. [36]; Street Lighting( LED) Luminaire of Output ? 20,965 lumen complete with control gear and lamp, (129.1) WATT. [111]; Including earthing of lighting poles, masts, feeder pillars, unit substations and LV feeders. [75] | 96,836.29 | SL |  |  |
|  | TE | **Telecom Network** |  | 2027-01-14 | 2027-02-03 |  |  |  |  |  |  |  |  |
| T/C-TE |  | Testing and Commissioning of Telecom Network | 17d | 2027-01-14 | 2027-02-03 | T/C-SL SS, CO-TE-CTV-TF-110, CO-TE-CTV-TF-120, CO-TE-CTV-TF-130, CO-TE-CTV-TF-140, MS-CF-TE | 0d |  | 2-ways ducts, 50mm diameter [516]; 6-ways ducts, 110mm diameter [2082]; 9-ways ducts, 6 x 160mm & 2 x 100mm [3054]; Manhole Type 2 (1600 x 1600 x 2000) [25]; Manhole Type 3 (1200 x 1200 x 2000) [31]; 6 PVC ducts 150x200 mm (60mm diameter) [162]; 6 PVC ducts 600x800 mm (120mm diameter) [282]; 6 PVC ducts 800x800 mm (170mm diameter) [402]; NVR Server with RAID (5, 6 or 10) to record all cameras storage 80TB with all hardware / software / licenses etc. [2]; VMS Server with RAID (5, 6 or 10) complete Hardware / Software with one Color Laser Printer and all associated [2]; Licenses for Cameras, Workstations and Keyboards [1]; Work Station (MMI with two monitors each, for Monitoring for CCTV & ACS) [1]; Keyboard with joystick for CCTV with all accessories as per specification [1]; Pole mounted IP( PoE) Fixed camera, 5MP,IP 66, IR illumination, 3-8mm varifocal, auto iris lens type [44]; Wall mounted IP( PoE) Fixed camera, 5MP,IP 66, IR illumination, 3-8mm varifocal, auto iris lens type [78]; 5MP Dome camera ceiling Mounted IP (PoE) indoor [17]; 5MP PTZ Multi Sensor Camera IP(PoE) 360 Degree View Outdoor with accessories (IP 66) [7]; 8 Port Industrial PoE Switch 10/100BaseT (0 deg to +70 deg. Celsius) [12]; Filed Equipment cabinet (FEC), with fan and ventilation, NEMEX 4X ,door, minimum size (600x600x400mm) [12]; 6 PVC ducts 200x150 mm (60mm diameter) [138]; 2-ways ducts, 50mm diameter [498]; IP Phone Communication server (hot standby) 50 Port equipped, Gateway, Gatekeeper, H.323, SIP, redundant Power etc. [3]; IP Phone Voice gateway [1]; Voice IP Phone [1]; NMS Server for IP phone and NETWORK Elements [1]; NMS Workstation [1]; Firm Ware, software & licenses [1]; Data Cable [1]; Power Cable [1]; Layer 3, 24 Port non-PoE switch10/1000BaseT/LX (-40 deg to +70 deg. Celsius), stack module and associated [2]; Layer 2, 24 Port non-PoE switch10/1000BaseT (-40 deg to +70 deg. Celsiu [6]; Network Management System Server [2]; Network Management System workstation [1]; 42U rack dimension (W x H x L) 800 x 2000 x 1000 mm [2]; 12U rack dimension (W x H x L) 600 x 625 x 600 mm [1]; 06C Optical Fiber SM [1820]; 48C Optical Fiber SM [5800]; 48 Core Splice Closure [7]; Optical fiber patch cord 5m [24]; Data Cable (STP CAT 6A) [10320]; 3C Power Cable armored 1.5mm2 [10320]; 3C Power Cable armored 2.5 mm2 [10320]; UTP CAT6A Patch Cord 1m/3m/5m [23]; Access Control Unit [5]; Access Card Reader [5]; Magnetic Lock [5]; Break Glass [4]; Exit Push button [5]; Door Sensor [5]; Biometrics Reader [8]; Smart Card Printer [1]; Card Issue Work Station [1]; Photographic Camera with stand [1]; Interface modules with CCTV, Fire and other systems [1] | 485,792.9 | TE |  |  |
|  | MV | **Medium Voltage Network** |  | 2027-01-14 | 2027-02-03 |  |  |  |  |  |  |  |  |
| T/C-MV |  | Testing and Commissioning of Medium Voltage Network | 17d | 2027-01-14 | 2027-02-03 | T/C-TE SS, CO-MV-TF-220, MS-CF-MV | 0d |  | Excavation for Trench size 40cm wide and 80cm deep (for 1 cable) [200.56]; Excavation for Trench Size 60cm wide and 80cm deep (for 2 cables) [100.1]; Excavation for Trench Size 90cm wide and 80cm deep (for 3 cables) [139.32]; Excavation for Trench Size 180cm wide and 80cm deep (for 6 cables) [61.92]; Excavation for Trench Size 210 cm wide and 80cm deep (for 7 cables) [72.24]; Excavation for Trench Size 240cm wide and 80cm deep (for 8 cables) [441.7]; Duct bank for (33) cables [126]; Duct bank for (21) cables [200]; Duct bank for (15) cables [60.09]; HV Cable Road Crossing [64.15] | 70,646.71 | MV |  |  |

| ID | WBS | Activity | Duration | Start | Finish | Predecessors | Total float | Free float | Resources | Cost | 01- Network | 13 BUILDINGS |
| --- | --- | --- | --- | --- | --- | --- | --- | --- | --- | --- | --- | --- |
|  | RD | **Road Works** |  | 2027-02-03 | 2027-02-22 |  |  |  |  |  |  |  |
| T/C-RD |  | Testing and Commissioning of Road Works | 13.75d | 2027-02-03 | 2027-02-22 | T/C-MV, T/C-TE, T/C-SL, T/C-SD, CO-RD-B-160, CO-RD-PV-160, CO-RD-PV-170, CO-RD-F-RM-180, CO-RD-F-TS-120, CO-RD-B-130, CO-RD-B-140, CO-RD-PV-140, CO-RD-PV-150, CO-RD-F-RM-170, CO-RD-F-TS-110, CO-RD-B-110, CO-RD-B-120, CO-RD-PV-120, CO-RD-PV-130, CO-RD-F-RM-160 FF, CO-RD-F-TS-100 FF, MS-CF-PW, MS-CF-IR, MS-CF-TSE | 0d |  | Excavations (including Roads , Plots and Pond) [502417]; Embankments to the Site and Roads (including Roads , Plots and Pond) [314650]; Subgrade [2963]; Aggregate base course [1482]; Bituminous base course (Grading I - Class A), including Prime Coat (MC1) [494]; Bituminous concrete wearing course, (Grading I - Class A), including tack coat (RC2) [494]; Precast Concrete Curbstone 150X300X900 Type (K1-A) [7267]; Precast Concrete Curbstone 100X200X500 Type (K4) [5638]; Precast Concrete Curbstone 150X300X500 Type (K1-B) [2210]; Precast Concrete Curbstone Type (K1-C) [99]; Flush Kerb Type (D) [188]; 60mm thick [27926]; 80mm thick [38996.8]; Retroreflective Thermoplastic White Traffic lines [965]; Retroreflective Thermoplastic Yellow, Traffic lines [1445]; Traffic signs, ground mounted, Sheet Aluminum, (breakaway) Single post IPE, with all accessories [99]; Precast Concrete Blister Warning Tactile Paver Brown Finish 300*300*60mm [64] | 1,309,763.43 | RD |  |
|  | 1 | **Utility Buildings** |  | 2026-11-10 | 2027-02-22 |  |  |  |  |  |  |  |
| T/C-DPO |  | Testing and Commissioning of Storm Drainage Ponds | 30d | 2026-11-10 | 2026-12-15 | CO-SD-PO-110-P1, CO-SD-PO-110-P2 | 26d | 0d | Finished grouted riprap for Pond 300mm as per drawings [3720] | 44,640 | SD |  |
| T/C-CTV |  | Testing and Commissioning of Guard Room and Fence | 30d | 2027-01-03 | 2027-02-07 | CO-UB-CR-360, A1100 | 10.75d |  | 100 mm thickness lean concrete under the foundation [1500]; Foundation [7310]; Slab on Grade [20]; Walls [1960]; Beams [288]; Columns [372]; Slabs [31]; Lightweight Concrete Roof insulation as per Architect's specification [155]; Common brickwork. 300mm thick; vertical straight wall complete with accessories. [8775]; Insulated brickwork. with expanded polystyrene 200mm thick; vertical straight wall complete with accessories . [102]; Common brickwork. 150mm thick; vertical straight wall complete with accessories. [180]; Two Layers of Bituminous Coating [39170]; 20x20 Approved Polysulfide Joint Sealant [415]; 2 perpendicular layers of cold bitumen coats [155]; 2 layer of 4mm HDPE membrane, 2 perpendicular layers cold bitumen coats [155]; 1 layer EPOXY Paint 300 micron [155]; Membrane fully bonded to prime deck and upstand [155]; Geotextile Filter membrane uv resistance [155]; 85mm thick thermal insulation [155]; 1.5mm thick epdm waterproofing membrane [155]; CW01 - 4500 mm width x 3700 mm height [1]; CW02 - 4500 mm width x 3700 mm height [1]; CW03 - 4500 mm width x 3700 mm height [1]; CW04 - 4500 mm width x 3700 mm height [1]; CW05 - 7500 mm width x 4250 mm height [1]; CW06 - 7500 mm width x 4250 mm height [1]; W01 - 1000 mm width x 2000 mm height [1]; W02 - 2000 mm width x 2000 mm height [2]; W03 - 2000 mm width x 1000 mm height [3]; D2 - 900 mm x 2200 mm height temper door [7]; D3 - 950 mm x 2000 mm height temper door [2]; Supply and install 33mm thick Lexan cladding blue complete with necessary framings [1114.96]; Supply and install 50mm thick random cut stone cladding complete with 600m [14316.8]; Supply and install External plastering to walls and columns min. 15mm thick with cement mortar of specified grade including [16765]; Supply and install 2 coats of weatherproof paint at walls including one prime coat and [16765]; Supply and install 300*300mm terrazzo tiles with 150mm high skirting at perimeter with approv [133]; Supply and install 300*300mm glazed ceramic wall tiles on cement mortar and including rough [95]; Supply and install internal plastering and 2 coats of acrylic paint at walls includin [216]; Supply and install 300*300mm glazed ceramic wall tiles on cement mortar and including rough and smooth p [12]; Supply and install 600*600mm porcelain tiles with approved quality on 30 mm mortar inclu [125]; Supply and install 12.5mm thk, gypsum board suspended ceiling including s [5]; Guard room coping 350mm [57]; Guard room coping 450mm [27]; Stone coping 500mm [2555]; Stone coping 525mm [1224]; Supply and install MODON Signage with Logo Type 1 [24]; Supply and install MODON Signage Type 2 [24]; Supply and install "Triangle Style" signage [55]; Office Chairs [4]; Office Tables [4]; Guard Stand [2]; Magnetic Control Access barrier, Automatic Vehicular Barriers to be installed on ground with magnetic access [6]; Supply and install Hand Wash Basin with Water Tap, angle valve, P-trap connected to 50mm diameter s [3]; Supply and install paper towel dispenser, surface mounted, satin finish stainless steel as per approv [3]; Supply and install mirror, size 460*910mm as per approved sample including frames, backing and all accessories to complete. [3]; Supply and install towel ring , surface mounted, satin finish stainless steel as per approved sample including accessories. [3]; Kitchen sink with single bowl with hot/cold water mixer. [3]; Supply and install Base mounted flush tank water Western water closet system with lid connected to 110mm soil pipe [2]; Gate Valves [2]; Slow Closing Valve [2]; 1 meter length 10mm diameter Flexible Hose with insulated handle complete with fork support, index push, vacuum breaker [2]; 50mm diameter [37]; 75mm diameter [4]; 80mm diameter [11]; 100mm diameter [2]; 110mm diameter [12]; 13mm diameter [1]; 15mm diameter [1]; 20mm diameter [1]; 25mm diameter [19]; 32mm diameter [35]; 40mm diameter [12]; 50mm diameter [1]; 20mm diameter [5]; 25mm diameter [12]; Isolation Valve Size 20 [3]; Isolation Valve Size 25 [3]; Isolation Valve Size 32 [5]; Isolation Valve Size 40 [1]; Isolation Valve Size 50 [1]; 20 mm diameter spray head for cold water supply [3]; Supply and install Electric Water Heater set with connection [3]; Water meter complete with accessories. [3]; Roof drain [3]; Vent on a roof to exhaust air [3]; Floor drain 100x80mm [4]; Gully trap 300x300 mm [3]; inspection chamber, size 800x900x1000 [3]; Mini split actual capacity 2 Ton [1]; Ducted split actual capacity 4 Ton [2]; Supply, fabricate, install and testing factory fabricated metal ducts with flanges complete with supports, vanes, [40]; Supplying, installation testing & commissioning of external insulation on ducts [40]; Supply, fix, testing and commissioning of exhaust air/fresh air louvers of powder coated extruded aluminium construction. [1]; Providing, fixing, testing and commissioning of powder coated extruded aluminum sections grills and diffusers with dampers. [2]; Air Grills 150mm x150mm [2]; Air Diffuser 600mm x 600mm [6]; Supply, Installation & Testing of 2 hours Fire rated system for closing the openings between roo [1]; 4.5 KG CO2 Type Fire Extinguishers [4]; 6 KG ABC Type Fire Extinguishers [4]; Floor cleanout, size 75 mm diameter [2]; Floor cleanout, size 110 mm diameter [4]; GRP water tanks capacity of each 1000 liter complete with all fittings, all valves and concrete pad [3]; Junction Box for lighting fixture [136]; Trench excavation to receive 2 nos 50mm diameter PVC Conduit, sand bedding and embedded with sa [3505]; Supply, Install, fixings, testing and commissioning 80W LED Projector waterproof DJ effect light including c [3]; Earth Pit [17]; Grounding rod 20mmX3m [9]; Grounding rod with Pit 20mmX3m [4]; Earthing Bar [3]; 120mm2 Tinned copper wire [200]; Guard Room 1 [1]; Guard Room 2 [1]; Guard Room 3 [1]; 30A, 2P AC Disconnect Switch [11]; 20A Duplex Receptacle Floor Mounted [12]; Twin Socket outlet [6]; Twin Socket outlet, Weather Proof [5]; Single gang Lighting switch [6]; 2way Single gang Lighting switch [2]; 36W LED linear Pendant lighting [14]; 36W LED Emergency linear Pendant lighting [6]; 13W recess mounted LED down light fitting [8]; 13W recess emergency mounted LED down light fitting with 1.5 Hr Battery [6]; 10.4W LED Exit light with 1.5 Hr Battery [3]; 4mm2 Cu./FRLSZH Cable [600]; 6mm2 Cu./FRLSZH Cable [110]; IR Intrusion Detection System Quad Beams (Tx & Rx) (SL-350 QDM) [60]; Control cable [3110]; CAT6A cable [3110]; Field Equipment Cabinet enclosed outdoor complete with precast concrete footing, suitable for parame [19]; Supply and install 800mm x 800mm x 800mm height concrete handhole with bituminous paint all aroun [19]; 800mm depth minimum Trench excavation to receive 3 nos 50mm diameter PVC Conduit with spacer, sand bedding an [1500]; Hot dipped galvanized cable conduits for CAT6A cable and Control Cables embedded to wall [420]; 8 Port Industrial PoE Switch 10/100BaseT (0 deg to +70 deg. Celsius) [31]; 06C Optical Fiber SM [2505]; 48C Optical Fiber SM [7010]; 48 Core Splice Closure [7]; Boom Barrier at Security Guard Room [6]; Pedestrian turnstile at Security Guard Room [6]; Access Control Unit [3]; Access Card Reader [3]; Magnetic Lock [3]; Break Glass [3]; Exit Push button [3]; Door Sensor [3]; Biometrics Reader [2]; Pole/Bollard mounted IP( PoE), Automatic Number Plate Recognition (ANPR, camera, 5MP,IP 66, IR illumin [6]; 12U rack dimension (W x H x L) 600 x 625 x 600 mm [1]; 400V, 3PH, 60Hz lighting control panel (LCP-02) [1]; 38W, 230V, 1PH, 60Hz fence, led linear uplight lighting, IP66 [136]; 4C-16mm2 CU/XLPE/PVC direct buried armored cable [1300]; 4C-10mm2 CU/XLPE/PVC direct buried armored cable [850]; 16mm2 CU/PVC wire [1300]; 10mm2 CU/PVC wire [850]; 4C-16mm2 CU/XLPE/PVC direct buried armored cable [4080]; 16mm2 CU/PVC wire [4080]; Fire Alarm Control panel with fire alarm zoning with Mimic panel with fire alarm zoning [4]; Main Fire Alarm Control panel with fire alarm zoning with Mimic panel with fire alarm zoning [1]; Supply and installation of the addressable manual call point with operation safety glass breaking and pushbutton [17]; Supply and installation of the photoelectric heat & smoke detector with base [41]; Sounder With Beacon [20]; Addressable Control module for Sounders [20]; Addressable Control module for HVAC System [2]; Addressable Monitor module for HVAC System [2]; 2C x 1.5 Sqm FR Rated Armored - Cable For Loop Wiring [1800]; DACT (Auto - Dailer) for 24x7 Civil Defence [1]; Transmission Communication cable - Fiber Optics 12Core [2500]; Transmission Communication cable - Ethernet Cable [500]; Supply, install to site and installation of power supply system for fire alarm control panel [1]; Supply, install to site and installation of power cable [1600]; Fire Fighter’s Telephone Centre [1]; Fireman’s Telephone Jack [2]; Voice Command Center [1] | 2,517,650.54 | GR&FE |  |
| T/C-SPS |  | Testing and Commissioning of Sewage Pump Stations& soft scape and planting work | 30d | 2027-01-14 | 2027-02-22 | T/C-TSE-10, CO-UB-PS-390 | 0.75d | 0d | Price [1238347 SAR] | 1,238,347.1 | UB | LIFT |
|  | 1 | **Handing over and close out** |  | 2026-12-15 | 2027-02-22 |  |  |  |  |  |  |  |
|  | 2 | **As-Built** |  | 2026-12-15 | 2027-02-09 |  |  |  |  |  |  |  |
| HO-100 |  | Submission As-Built Drawing For Sewage Network | 14d | 2026-12-15 | 2026-12-31 | T/C-SW | 42.75d |  |  |  |  |  |
| HO-130 |  | Submission As-Built Drawing For Pond | 14d | 2026-12-15 | 2026-12-31 | T/C-DPO | 42.75d |  |  |  |  |  |
| HO-200 |  | Submission As-Built Drawing For Storm Network | 14d | 2026-12-15 | 2026-12-31 | T/C-SD SS, T/C-DPO | 42.75d |  |  |  |  |  |
| HO-180 |  | Submission As-Built Drawing For Irrigation Network | 12d | 2026-12-27 | 2027-01-10 | T/C-IR SS | 34.75d |  |  |  |  |  |
| HO-190 |  | As-Built Drawing For Potable Water Network | 12d | 2026-12-27 | 2027-01-10 | T/C-PW SS | 34.75d |  |  |  |  |  |
| HO-150 |  | Submission As-Built Drawing For Street Lighting Network | 12d | 2027-01-14 | 2027-01-28 | T/C-SL SS | 18.75d |  |  |  |  |  |
| HO-160 |  | Submission As-Built Drawing For Telecom Network | 12d | 2027-01-14 | 2027-01-28 | T/C-TE SS | 18.75d |  |  |  |  |  |
| HO-170 |  | Submission As-Built Drawing For Medium Voltage Network | 12d | 2027-01-14 | 2027-01-28 | T/C-MV SS | 18.75d |  |  |  |  |  |
| HO-210 |  | Submission As-Built Drawing For Pump station | 12d | 2027-01-14 | 2027-01-28 | T/C-SPS SS | 18.75d |  |  |  |  |  |
| HO-140 |  | Submission As-Built Drawing For Roads Network | 5d | 2027-02-03 | 2027-02-09 | T/C-RD SS | 8.75d |  |  |  |  |  |
|  | 1 | **De-Mobilization Works** |  | 2027-02-13 | 2027-02-22 |  |  |  |  |  |  |  |
| HO-120 |  | Remove material stock & Storage area | 7d | 2027-02-13 | 2027-02-22 | T/C-RD SS, T/C-RD FF | 0d |  |  |  |  |  |
| HO-220 |  | Removing Portable Caravan | 5d | 2027-02-15 | 2027-02-22 | T/C-RD SS, T/C-RD FF | 0d |  |  |  |  |  |
| HO-230 |  | Remove Temporary Car Shades | 5d | 2027-02-15 | 2027-02-22 | T/C-RD SS, T/C-RD FF | 0d |  |  |  |  |  |
|  | 3 | **Handing Over** |  | 2027-02-13 | 2027-02-22 |  |  |  |  |  |  |  |
| HO-110 |  | Final Testing Work | 7d | 2027-02-13 | 2027-02-22 | T/C-RD SS, T/C-RD FF | 0d |  |  |  |  |  |
| HO-250 |  | Review B.O.Q Qty. to ensure compliance with the actual status | 7d | 2027-02-13 | 2027-02-22 | T/C-RD SS, T/C-RD FF | 0d |  |  |  |  |  |
| HO-260 |  | Review FIR Approval to ensure compliance with the actual status | 7d | 2027-02-13 | 2027-02-22 | T/C-RD SS, T/C-RD FF | 0d |  |  |  |  |  |
| HO-270 |  | Review the sample drawing to ensure compliance with the actual status | 7d | 2027-02-13 | 2027-02-22 | T/C-RD SS, T/C-RD FF | 0d |  |  |  |  |  |
| HO-240 |  | Final Walkthrough and Inspection | 2d | 2027-02-20 | 2027-02-22 | T/C-RD SS, T/C-RD FF | 0d |  |  |  |  |  |
| HO-280 |  | Punch List Completion | 2d | 2027-02-20 | 2027-02-22 | T/C-RD SS, T/C-RD FF | 0d |  |  |  |  |  |

## Activity codes

| Code | Value | Meaning |
| --- | --- | --- |
| 01- Network | GR&FE | GAURD ROOM AND FENCE |
| 01- Network | IR | Irrigation Network |
| 01- Network | MV | Medium Voltage Network |
| 01- Network | PW | Potable Water Network |
| 01- Network | RD | Roads Network |
| 01- Network | SD | Storm Drainage Network |
| 01- Network | SL | Street Lighting Network |
| 01- Network | SW | Sewage Network |
| 01- Network | TE | Telecom Network |
| 01- Network | TSE | Treated Sewage Effluent |
| 01- Network | UB | UTILITY BUILDING |
| 08 Stage | CON | Construction |
| 12 FENCE | E.F.P1 | EASTERN FENCE-P1 |
| 12 FENCE | E.F.P2 | EASTERN FENCE-P2 |
| 12 FENCE | NORTH | NORTHERN FENCE |
| 12 FENCE | S.F | SOTHERN FENCE |
| 12 FENCE | W.F.P1 | WESTERN FENCE-P1 |
| 12 FENCE | W.F.P2 | WESTERN FENCE-P2 |
| 13 BUILDINGS | LIFT | LIFT STATION |
| 13 BUILDINGS | LS | LANDSCAPE |
| 13 BUILDINGS | PUMP | PUMP STATION |
