# 20 READY BUILT FACTORIES 900 m2 IN HAIL

Schedule from Primavera P6, 2025-12-04 to 2026-11-04, data date 2026-10-26, costs in USD, A marks actual dates.

## Calendars

- HAL1-05-3: Mon-Thu 08:00-12:00, 14:00-18:00; Fri off; Sat-Sun 08:00-12:00, 14:00-18:00. Exceptions (off unless hours are given): 2026-02-17 05:00-13:00, 2026-02-18 to 2026-02-19 05:00-12:00, 2026-02-21 05:00-12:00, 2026-02-22, 2026-02-23 to 2026-02-26 05:00-12:00, 2026-02-28 05:00-12:00, 2026-03-01 to 2026-03-05 05:00-13:00, 2026-03-07 to 2026-03-12 05:00-13:00, 2026-03-14 to 2026-03-18 05:00-13:00, 2026-03-19, 2026-05-26 to 2026-05-28, 2026-09-23.

## Resources

| Resource | Group | Rate | Notes |
| --- | --- | --- | --- |
| Engineer | labor |  | ï»¿ |
| Draftman | labor |  | ï»¿ |
| Surveyor | labor |  | ï»¿ |
| POKLIN | equipment |  | ? |
| Dump Truck | equipment |  | ?? |
| Helper | labor |  | ?? |
| DUMP TRUCK DRIVER | labor |  | ? |
| POKLIN OPERATOR | labor |  | ? |
| CRANE | equipment |  | ? |
| Mason | labor |  | ?? |
| Plumber | labor |  | ?? |
| Electrician | labor |  | ?? |
| AC Technician | labor |  | ï»¿ |
| STEEL FIXER | labor |  | ? |
| Carpenter | labor |  | ?? |
| Purchaser | labor |  | ï»¿ |
| Construction Cost | material | 1 | ï»¿ |
| Engineer | labor |  | ï»¿ |
| Loading workers | labor |  | ï»¿ |
| Unloading workers | labor |  | ï»¿ |
| Draftman | labor |  | ï»¿ |
| General Labour | labor |  | ?? |
| Equipment Operator | labor |  | ï»¿ |
| Truck | equipment |  | ?? |
| Excavator | equipment |  | ?? |
| Mini Roller Compactor | equipment |  | ? |
| Motor Grader | equipment |  | ï»¿ |
| Roller Compactor | equipment |  | ï»¿ |
| Pipe Fitter | labor |  | ï»¿ |
| Plumber | labor |  | ? |
| Pipe Fitter | labor |  | ? |
| Mason | labor |  | ?? |
| Carperter | labor |  | ?? |
| Steel Fixer | labor |  | ?? |
| Concrete Mixer | equipment |  | ?? |
| Painter | labor |  | ? |
| Wheel Loader | equipment |  | ï»¿ |
| Tile Fixer | labor |  | ? |
| AC Technician | labor |  | ? |
| Ductman | labor |  | ? |
| Electrician | labor |  | ? |
| Structural Steel Fixer | labor |  | ? |
| Mobile Crane | equipment |  | ? |
| AAC panel erector | labor |  | ï»¿ |
| Sandwich panel worker | labor |  | ï»¿ |
| Roof sheet worker | labor |  | ï»¿ |
| Paver | equipment |  | ? |
| Mobile Crane | equipment |  | ï»¿ |
| Electrician | labor |  | ï»¿ |
| Excavator | equipment |  | ?? |
| Mason | labor |  | ?? |
| Carperter | labor |  | ?? |
| Steel Fixer | labor |  | ?? |
| Concrete Mixer | equipment |  | ?? |
| General Labour | labor |  | ?? |
| Truck | equipment |  | ?? |
| Excavator | equipment |  | ?? |
| Mini Roller Compactor | equipment |  | ? |
| Painter | labor |  | ? |
| Wheel Loader | equipment |  | ï»¿ |
| Structural Steel Fixer | labor |  | ? |
| Mobile Crane | equipment |  | ? |
| Mason | labor |  | ?? |
| Carperter | labor |  | ?? |
| Concrete Mixer | equipment |  | ?? |
| Steel Fixer | labor |  | ?? |
| Equipment Operator | labor |  | ï»¿ |

## Schedule

| ID | WBS | Activity | Type | Duration | Start | Finish | Predecessors | Complete | Planned start | Planned finish | Total float | Free float | Phasing Code Category | Target Finish Date |
| --- | --- | --- | --- | --- | --- | --- | --- | --- | --- | --- | --- | --- | --- | --- |
|  | 1 | **PROJECT MILESTONES** |  |  | 2025-12-04 | 2026-11-04 |  |  |  |  |  |  |  |  |
|  | 1 | **CONTRACTUAL MILESTONES** |  |  | 2025-12-04 | 2026-11-04 |  |  |  |  |  |  |  |  |
| HAL-PMS-MMS-0010 |  | Project Start Date | milestone | 0d | 2025-12-04 A | 2025-12-04 A |  | 100% | 2025-12-29 | 2025-12-29 |  |  | 01 |  |
| HAL-PMS-MMS-0030 |  | Completion of Site Suvey Works | milestone | 0d | 2025-12-04 A | 2025-12-04 A | HAL-C-GEN-10 | 100% | 2026-01-05 | 2026-01-05 |  |  | 01 | 15-Aug-22 |
| HAL-PMS-MMS-0040 |  | Completion of Time Schedule submission | milestone | 0d | 2025-12-22 A | 2025-12-22 A | HAL-PRE-SUB-0012 | 100% | 2026-01-05 | 2026-01-05 |  |  | 01 | 15-Aug-22 |
| HAL-PMS-MMS-0050 |  | Completion of Plans (PEP,PQP,HSE, Procurement Plan) | milestone | 0d | 2025-12-31 A | 2025-12-31 A | HAL-PRE-SUB-0015 | 100% | 2026-01-26 | 2026-01-26 |  |  | 01 | 15-Aug-22 |
| HAL-PMS-MMS-0020 |  | Completion of Mobilization Works | milestone | 0d | 2026-01-05 A | 2026-01-05 A | HAL-MOB-SO.0020, HAL-MOB-SO.0020 FF | 100% | 2026-01-26 | 2026-01-26 |  |  | 01 | 15-Aug-22 |
| HAL-PMS-MMS-0070 |  | Completion of Site levelling, local roads & parkings | milestone | 0d | 2026-01-05 A | 2026-01-05 A | HAL-C-GEN-180 | 100% | 2026-01-28 | 2026-01-28 |  |  | 01 | 15-Aug-22 |
| HAL-PMS-MMS-0080 |  | Network start | milestone | 0d | 2026-05-05 A | 2026-05-05 A | HAL-C-ENV-F-212 SS | 100% | 2026-08-06 | 2026-08-06 |  |  | 01 | 15-Aug-22 |
| HAL-PMS-MMS-0060 |  | Completion of Engineering and Materials | milestone | 0d | 2026-10-19 A | 2026-10-19 A | HAL-E-SS-EX-1050 | 100% | 2026-10-26 | 2026-10-26 |  |  | 01 | 15-Aug-22 |
| HAL-PMS-MMS-0110 |  | Competion of Testing and Commissioning | milestone | 0d | 2026-10-27 | 2026-10-27 | HAL-C-TC-E-3656 |  |  |  | 7.5d |  | 01 |  |
| HAL-PMS-MMS-0090 |  | Completion of Construction | milestone | 0d | 2026-10-28 | 2026-10-28 | HAL-C-EX-R-1440 |  |  |  | 6.7d |  | 01 | 15-Aug-22 |
| HAL-PMS-MMS-0100 |  | Project Completion Date | milestone | 0d | 2026-11-04 | 2026-11-04 | HAL-FH-1020, HAL-PMS-MMS-0090, HAL-PMS-MMS-0110, HAL-FH-1020 FF |  |  |  | 0d |  | 01 | 15-Aug-22 |
|  | 3 | **DISCIPLINE MILESTONES** |  |  | 2025-12-28 | 2026-10-28 |  |  |  |  |  |  |  |  |
|  | 6 | **900 SQM FACTORIES** |  |  | 2025-12-28 | 2026-10-28 |  |  |  |  |  |  |  |  |
| HAL-PMS-DMS-2360 |  | Construction Start | milestone | 0d | 2025-12-28 A | 2025-12-28 A | HAL-C-GEN-10 SS | 100% | 2026-01-18 | 2026-01-18 |  |  | 01 |  |
| HAL-PMS-DMS-2310 |  | Completion of Civil works | milestone | 0d | 2026-08-26 A | 2026-08-26 A | HAL-PMS-DMS-2360, HAL-C-B-A-200, HAL-C-C-A-320, HAL-C-E-SS-0130 | 100% | 2026-10-26 | 2026-10-26 |  |  | 01 |  |
| HAL-PMS-DMS-2330 |  | Completion of Mechanical works | milestone | 0d | 2026-10-08 A | 2026-10-08 A | HAL-PMS-DMS-2310, HAL-C-E-M-370 | 100% | 2026-10-31 | 2026-10-31 |  |  | 01 |  |
| HAL-PMS-DMS-2370 |  | Construction Finish | milestone | 0d | 2026-10-28 | 2026-10-28 | HAL-C-EX-R-1440 |  |  |  | 4.7d | 4.2d | 01 |  |
| HAL-PMS-DMS-2320 |  | Completion of Electrical works | milestone | 0d | 2026-10-28 | 2026-10-28 | HAL-PMS-DMS-2340, HAL-C-E-E-420 |  |  |  | 4d | 3.5d | 01 |  |
| HAL-PMS-DMS-2340 |  | Completion of Architectural works | milestone | 0d | 2026-10-28 | 2026-10-28 | HAL-PMS-DMS-2330, HAL-C-B-A-850, HAL-C-C-A-1670, HAL-C-A-A-1260, HAL-C-E-A-340 |  |  |  | 4d | 0d | 01 |  |
|  | 1 | **SITE INFRASTRUCTURE** |  |  | 2026-09-19 | 2026-10-28 |  |  |  |  |  |  |  |  |
| HAL-PMS-DMS-2460 |  | Completion of Environmentall works | milestone | 0d | 2026-09-19 A | 2026-09-19 A | HAL-C-ENV-SW-616 | 100% | 2026-10-26 | 2026-10-26 |  |  | 01 |  |
| HAL-PMS-DMS-2450 |  | Completion of External works | milestone | 0d | 2026-10-28 | 2026-10-28 | HAL-C-EX-M-1391, HAL-C-EX-R-1440 |  |  |  | 4.7d | 4.2d | 01 |  |

| ID | WBS | Activity | Duration | Start | Finish | Predecessors | Complete | Planned start | Planned finish | Resources | Phasing Code Category | user_text1 | Target Start Date | Target Finish Date |
| --- | --- | --- | --- | --- | --- | --- | --- | --- | --- | --- | --- | --- | --- | --- |
|  | 2 | **MOBILIZATION** |  | 2025-12-04 | 2026-01-05 |  |  |  |  |  |  |  |  |  |
|  | 3 | **SITE FACILITIES AND OFFICES** |  | 2025-12-04 | 2026-01-05 |  |  |  |  |  |  |  |  |  |
| HAL-MOB-SO.0010 |  | Site Survey | 2d | 2025-12-04 A | 2025-12-04 A | HAL-PMS-MMS-0010 SS | 100% | 2025-12-29 | 2025-12-30 | Surveyor [32 h] | 02 |  |  |  |
| HAL-MOB-SO.0011 |  | Site Layout Plan Prep | 2d | 2025-12-04 A | 2025-12-06 A | HAL-PMS-MMS-0010, HAL-MOB-SO.0010 | 100% | 2025-12-31 | 2026-01-01 | Draftman [32 h]; Engineer [32 h] | 02 |  |  |  |
| HAL-MOB-SO.0014 |  | Clear and Grub for Offices and Access Roads | 2d | 2025-12-04 A | 2025-12-08 A | HAL-MOB-SO.0012 SS+3d | 100% | 2026-01-06 | 2026-01-07 | POKLIN [16 h]; Dump Truck [16 h]; Helper [32 h]; DUMP TRUCK DRIVER [32 h]; POKLIN OPERATOR [32 h] | 02 |  |  |  |
| HAL-MOB-SO.0012 |  | Site Layout Plan Submittal | 2d | 2025-12-06 A | 2025-12-07 A | HAL-MOB-SO.0011 | 100% | 2026-01-03 | 2026-01-04 | Engineer [32 h]; Draftman [32 h] | 02 |  |  |  |
| HAL-MOB-SO.0013 |  | Site Layout Plan Owner Approval | 2d | 2025-12-06 A | 2025-12-08 A | HAL-MOB-SO.0012 | 100% | 2026-01-05 | 2026-01-06 |  | 02 |  |  |  |
| HAL-MOB-SO.0019 |  | Mobilization of Manpower | 2d | 2025-12-16 A | 2026-01-04 A | HAL-MOB-SO.0018 | 100% | 2026-01-27 | 2026-01-28 |  | 02 |  |  |  |
| HAL-MOB-SO.0015 |  | Construct Site Offices | 4d | 2025-12-18 A | 2025-12-25 A | HAL-MOB-SO.0014, HAL-MOB-SO.0013 | 100% | 2026-01-08 | 2026-01-12 | CRANE [32 h]; Helper [64 h]; Mason [64 h] | 02 |  |  |  |
| HAL-MOB-SO.0016 |  | Electrical Works and Connections | 4d | 2025-12-23 A | 2025-12-24 A | HAL-MOB-SO.0015 | 100% | 2026-01-13 | 2026-01-17 | Helper [64 h]; Electrician [64 h] | 02 |  |  |  |
| HAL-MOB-SO.0020 |  | Mobilization of Equipment | 2d | 2025-12-23 A | 2026-01-04 A | HAL-MOB-SO.0019 SS | 100% | 2026-01-27 | 2026-01-28 |  | 02 |  |  |  |
| HAL-MOB-SO.0018 |  | Install Project Signs | 4d | 2025-12-24 A | 2026-01-05 A | HAL-MOB-SO.0017 | 100% | 2026-01-22 | 2026-01-26 | CRANE [32 h]; Helper [64 h]; Mason [64 h] | 02 |  |  |  |
| HAL-MOB-SO.0017 |  | Site Utilities | 4d | 2025-12-27 A | 2026-01-04 A | HAL-MOB-SO.0016 | 100% | 2026-01-18 | 2026-01-21 | Helper [64 h]; Plumber [64 h] | 02 |  |  |  |
|  | 2 | **PRELIMINARY SUBMITTALS** |  | 2025-12-10 | 2025-12-31 |  |  |  |  |  |  |  |  |  |
|  | 1 | **PREPARATION AND SUBMITTALS** |  | 2025-12-10 | 2025-12-21 |  |  |  |  |  |  |  |  |  |
| HAL-PRE-SUB-0014 |  | Communication Plan | 2d | 2025-12-10 A | 2025-12-10 A | HAL-PRE-SUB-0013 SS, HAL-PRE-SUB-0013 | 100% | 2026-01-07 | 2026-01-08 | Engineer [32 h] | 02 | ??C??E ???E?CI I?E C?E???? | 2020-05-13 | 09-Jul-20 A |
| HAL-PRE-SUB-0013 |  | Risk Management plan | 2d | 2025-12-15 A | 2025-12-15 A | HAL-PRE-SUB-0011 SS, HAL-PRE-SUB-0012 | 100% | 2026-01-05 | 2026-01-06 | Engineer [32 h] | 02 |  | 2020-04-07 | 21-Jul-20 A |
| HAL-PRE-SUB-0015 |  | Quality Control Plan | 2d | 2025-12-15 A | 2025-12-15 A | HAL-PRE-SUB-0014 | 100% | 2025-12-29 | 2025-12-30 | Engineer [32 h] | 02 | ??C??E ???E?CI C???? C???C?? | 2020-03-04 | 27-Apr-20 A |
| HAL-PRE-SUB-0011 |  | Health & Safety Plan | 2d | 2025-12-17 A | 2025-12-17 A | HAL-PRE-SUB-0010 | 100% | 2025-12-31 | 2026-01-01 | Engineer [32 h] | 02 | E?I?? I?E C???C?E ?C?????E ?C?E???E | 2020-03-01 | 20-Jul-20 A |
| HAL-PRE-SUB-0012 |  | Baseline Schedule | 2d | 2025-12-18 A | 2025-12-18 A | HAL-PRE-SUB-0010, HAL-PRE-SUB-0011 | 100% | 2026-01-03 | 2026-01-04 | Engineer [32 h] | 02 | E?I?? C??I?? C????? | 2020-03-16 | 02-Jul-20 A |
| HAL-PRE-SUB-0010 |  | Project Execution Plan | 2d | 2025-12-21 A | 2025-12-21 A | HAL-MOB-SO.0015 | 100% | 2025-12-29 | 2025-12-30 | Engineer [32 h] | 02 | E?I?? I?E C?E???? | 2020-08-17 | 01-Sep-20 A |
|  | 2 | **REVIEW AND APPROVALS** |  | 2025-12-10 | 2025-12-31 |  |  |  |  |  |  |  |  |  |
| HAL-PRE-SUB-1013 |  | Communication Plan | 10d | 2025-12-10 A | 2025-12-10 A | HAL-PRE-SUB-1012 SS, HAL-PRE-SUB-0014 | 100% | 2026-01-10 | 2026-01-20 |  | 02 | ??C??E ???E?CI I?E C?E???? | 2020-05-13 | 09-Jul-20 A |
| HAL-PRE-SUB-1012 |  | Risk Management plan | 10d | 2025-12-15 A | 2025-12-28 A | HAL-PRE-SUB-1011 SS, HAL-PRE-SUB-0013 | 100% | 2026-01-07 | 2026-01-18 |  | 02 |  | 2020-04-07 | 21-Jul-20 A |
| HAL-PRE-SUB-1014 |  | Quality Control Plan | 10d | 2025-12-15 A | 2025-12-28 A | HAL-PRE-SUB-0015 | 100% | 2025-12-31 | 2026-01-11 |  | 02 | ??C??E ???E?CI C???? C???C?? | 2020-03-04 | 27-Apr-20 A |
| HAL-PRE-SUB-1011 |  | Health & Safety Plan | 10d | 2025-12-17 A | 2025-12-31 A | HAL-PRE-SUB-0011 | 100% | 2026-01-03 | 2026-01-13 |  | 02 | E?I?? I?E C???C?E ?C?????E ?C?E???E | 2020-03-01 | 20-Jul-20 A |
| HAL-PRE-SUB-1015 |  | Baseline Schedule | 10d | 2025-12-18 A | 2025-12-22 A | HAL-PRE-SUB-1010, HAL-PRE-SUB-0012 | 100% | 2026-01-12 | 2026-01-22 |  | 02 | E?I?? C??I?? C????? | 2020-03-16 | 02-Jul-20 A |
| HAL-PRE-SUB-1010 |  | Project Execution Plan | 10d | 2025-12-21 A | 2025-12-22 A | HAL-PRE-SUB-0010 | 100% | 2025-12-31 | 2026-01-11 |  | 02 | E?I?? I?E C?E???? | 2020-08-17 | 01-Sep-20 A |

| ID | WBS | Activity | Duration | Start | Finish | Predecessors | Complete | Planned start | Planned finish | Resources | Phasing Code Category | Discipline |
| --- | --- | --- | --- | --- | --- | --- | --- | --- | --- | --- | --- | --- |
|  | 3 | **ENGINEERING (3%)** |  | 2025-12-08 | 2026-08-16 |  |  |  |  |  |  |  |
|  | 1 | **SHOP DRAWINGS** |  | 2025-12-11 | 2026-03-29 |  |  |  |  |  |  |  |
|  | 1 | **PREPARATION AND SUBMITTAL** |  | 2025-12-11 | 2026-02-07 |  |  |  |  |  |  |  |
|  | 5 | **STRUCTURAL** |  | 2025-12-24 | 2026-02-02 |  |  |  |  |  |  |  |
| HAL-E-SS-C-830 |  | SECTIONS | 1.62d | 2025-12-24 A | 2025-12-24 A | HAL-E-SS-C-820 | 100% | 2026-02-19 | 2026-02-21 | Engineer [16 h]; Draftman [16 h] | 03 | 01 |
| HAL-E-SS-C-840 |  | EXTERNAL WALL SECTION DETAILS | 0.62d | 2025-12-24 A | 2025-12-24 A | HAL-E-SS-C-830 | 100% | 2026-02-23 | 2026-02-23 | Engineer [32 h]; Draftman [32 h] | 03 | 01 |
| HAL-E-SS-C-750 |  | FOUNDATION LAYOUT | 4d | 2025-12-30 A | 2025-12-30 A | HAL-E-SS-R-780 | 100% | 2026-01-19 | 2026-01-22 | Draftman [16 h]; Engineer [16 h] | 03 | 01 |
| HAL-E-SS-C-820 |  | COLUMNS AND AXIS LAYOUT | 2d | 2026-01-01 A | 2026-01-01 A | HAL-E-SS-C-810 | 100% | 2026-02-08 | 2026-02-09 | Engineer [16 h]; Draftman [16 h] | 03 | 01 |
| HAL-E-SS-C-860 |  | TYPICAL STRUCTURAL SECTION DETAILS | 2d | 2026-01-01 A | 2026-01-01 A | HAL-E-SS-C-850 | 100% | 2026-02-17 | 2026-02-19 | Engineer [32 h]; Draftman [32 h] | 03 | 01 |
| HAL-E-SS-C-870 |  | STRUCTURAL SCHEDULE | 1.62d | 2026-01-01 A | 2026-01-01 A | HAL-E-SS-C-860 | 100% | 2026-02-19 | 2026-02-21 | Engineer [32 h]; Draftman [32 h] | 03 | 01 |
| HAL-E-SS-C-780 |  | TIE BEAM @ 4500mm EL. | 2d | 2026-01-08 A | 2026-01-08 A | HAL-E-SS-C-770 | 100% | 2026-01-25 | 2026-01-26 | Engineer [16 h]; Draftman [16 h] | 03 | 01 |
| HAL-E-SS-C-880 |  | PUMP SHED AND GRP WATER TANK STRUCTURAL DETAILS (1-2) | 2d | 2026-01-22 A | 2026-01-22 A | HAL-E-SS-C-870 | 100% | 2026-02-26 | 2026-03-01 | Engineer [32 h]; Draftman [32 h] | 03 | 01 |
| HAL-E-SS-C-890 |  | PUMP SHED AND GRP WATER TANK STRUCTURAL DETAILS (2-2) | 2d | 2026-01-22 A | 2026-01-22 A | HAL-E-SS-C-880 | 100% | 2026-03-01 | 2026-03-03 | Engineer [32 h]; Draftman [32 h] | 03 | 01 |
| HAL-E-SS-C-760 |  | GRADE BEAM / SLAB ON GRADE LAYOUT | 3d | 2026-01-28 A | 2026-01-28 A | HAL-E-SS-C-750 | 100% | 2026-02-07 | 2026-02-09 | Engineer [16 h]; Draftman [16 h] | 03 | 01 |
| HAL-E-SS-C-770 |  | BASE PLATE LAYOUT | 2d | 2026-02-02 A | 2026-02-02 A | HAL-E-SS-C-760 | 100% | 2026-02-15 | 2026-02-16 | Engineer [16 h]; Draftman [16 h] | 03 | 01 |
| HAL-E-SS-C-790 |  | ROOF FRAMING LAYOUT | 2d | 2026-02-02 A | 2026-02-02 A | HAL-E-SS-C-780 | 100% | 2026-02-17 | 2026-02-19 | Engineer [16 h]; Draftman [16 h] | 03 | 01 |
| HAL-E-SS-C-800 |  | PURLINS FRAMING LAYOUT | 2d | 2026-02-02 A | 2026-02-02 A | HAL-E-SS-C-790 | 100% | 2026-02-19 | 2026-02-23 | Engineer [16 h]; Draftman [16 h] | 03 | 01 |
| HAL-E-SS-C-810 |  | ROOF SHEETING LAYOUT | 2d | 2026-02-02 A | 2026-02-02 A | HAL-E-SS-C-800 | 100% | 2026-02-23 | 2026-02-25 | Engineer [16 h]; Draftman [16 h] | 03 | 01 |
| HAL-E-SS-C-850 |  | BASE PLATE DETAILS | 2d | 2026-02-02 A | 2026-02-02 A | HAL-E-SS-C-840 | 100% | 2026-02-25 | 2026-02-28 | Engineer [32 h]; Draftman [32 h] | 03 | 01 |
|  | 2 | **ARCHITECTURAL** |  | 2025-12-23 | 2026-02-04 |  |  |  |  |  |  |  |
| HAL-E-SS-A-830 |  | GROUND FLOOR LAYOUT PLAN | 2d | 2025-12-23 A | 2025-12-23 A | HAL-E-SS-C-800 | 100% | 2026-02-18 | 2026-02-21 | Engineer [16 h]; Draftman [16 h] | 03 | 02 |
| HAL-E-SS-A-840 |  | GROUND FLOOR ENLARGED LAYOUT PLAN | 1.12d | 2025-12-23 A | 2025-12-23 A | HAL-E-SS-A-830 | 100% | 2026-02-21 | 2026-02-23 | Engineer [16 h]; Draftman [16 h] | 03 | 02 |
| HAL-E-SS-A-850 |  | SKYLIGHT DISTRIBUTION - ROOF LAYOUT PLAN | 2d | 2025-12-23 A | 2025-12-23 A | HAL-E-SS-A-840 | 100% | 2026-02-14 | 2026-02-15 | Engineer [16 h]; Draftman [16 h] | 03 | 02 |
| HAL-E-SS-A-1170 |  | ELEVATIONS (SHEET 01 0F 02) | 2d | 2025-12-24 A | 2025-12-24 A | HAL-E-SS-A-850 | 100% | 2026-02-25 | 2026-03-01 | Engineer [32 h]; Draftman [32 h] | 03 | 02 |
| HAL-E-SS-A-860 |  | ELEVATIONS (SHEET 01 0F 02) | 2d | 2025-12-24 A | 2025-12-24 A | HAL-E-SS-A-850 | 100% | 2026-02-25 | 2026-03-01 | Engineer [32 h]; Draftman [32 h] | 03 | 02 |
| HAL-E-SS-A-870 |  | BUILDING SECTIONS | 1.62d | 2025-12-24 A | 2025-12-24 A | HAL-E-SS-A-860 | 100% | 2026-02-16 | 2026-02-17 | Engineer [32 h]; Draftman [32 h] | 03 | 02 |
| HAL-E-SS-A-880 |  | WALL SECTIONS | 2d | 2025-12-24 A | 2025-12-24 A | HAL-E-SS-A-870 | 100% | 2026-03-03 | 2026-03-05 | Engineer [32 h]; Draftman [32 h] | 03 | 02 |
| HAL-E-SS-A-890 |  | CEILING LAYOUT PLAN | 2d | 2026-01-11 A | 2026-01-11 A | HAL-E-SS-A-880 | 100% | 2026-02-17 | 2026-02-19 | Engineer [32 h]; Draftman [32 h] | 03 | 02 |
| HAL-E-SS-A-900 |  | FINISHING LAYOUT PLAN | 1.62d | 2026-01-11 A | 2026-01-11 A | HAL-E-SS-A-890 | 100% | 2026-02-19 | 2026-02-21 | Engineer [32 h]; Draftman [32 h] | 03 | 02 |
| HAL-E-SS-A-910 |  | TOILET DETAILS | 1.5d | 2026-01-11 A | 2026-01-11 A | HAL-E-SS-A-900 | 100% | 2026-02-23 | 2026-02-24 | Engineer [32 h]; Draftman [32 h] | 03 | 02 |
| HAL-E-SS-A-930 |  | MISCELLANEOUS DETAILS - 01 | 2d | 2026-01-21 A | 2026-01-21 A | HAL-E-SS-A-920 | 100% | 2026-02-24 | 2026-02-26 | Engineer [32 h]; Draftman [32 h] | 03 | 02 |
| HAL-E-SS-A-940 |  | MISCELLANEOUS DETAILS - 02 | 1.5d | 2026-01-21 A | 2026-01-21 A | HAL-E-SS-A-930 | 100% | 2026-02-19 | 2026-02-21 | Engineer [32 h]; Draftman [32 h] | 03 | 02 |
| HAL-E-SS-A-950 |  | SIGNAGE LOCATION PLAN | 2d | 2026-01-21 A | 2026-01-21 A | HAL-E-SS-A-940 | 100% | 2026-03-02 | 2026-03-04 | Engineer [32 h]; Draftman [32 h] | 03 | 02 |
| HAL-E-SS-A-960 |  | SIGNAGE DESIGN DETAILS | 2d | 2026-01-21 A | 2026-01-21 A | HAL-E-SS-A-950 | 100% | 2026-03-04 | 2026-03-07 | Engineer [32 h]; Draftman [32 h] | 03 | 02 |
| HAL-E-SS-A-920 |  | DOORS & WINDOWS SCHEDULE | 1.5d | 2026-02-04 A | 2026-02-04 A | HAL-E-SS-A-910 | 100% | 2026-02-17 | 2026-02-19 | Engineer [32 h]; Draftman [32 h] | 03 | 02 |

| ID | WBS | Activity | Duration | Start | Finish | Predecessors | Complete | Planned start | Planned finish | Resources | Phasing Code Category | Discipline |
| --- | --- | --- | --- | --- | --- | --- | --- | --- | --- | --- | --- | --- |
|  | 3 | **MECHANICAL** |  | 2026-01-14 | 2026-02-03 |  |  |  |  |  |  |  |
| HAL-E-SS-M-600 |  | TYPICAL GROUND FLOOR PLAN-PLUMBING- DRAINAGE | 4d | 2026-01-14 A | 2026-01-14 A | HAL-E-SS-A-840 | 100% | 2026-02-12 | 2026-02-16 | Engineer [16 h]; Draftman [16 h] | 03 | 03 |
| HAL-E-SS-M-610 |  | TOILETS DETAILS PLUMBING-DRAINAGE | 2d | 2026-01-17 A | 2026-01-19 A | HAL-E-SS-M-600 | 100% | 2026-02-17 | 2026-02-19 | Engineer [32 h]; Draftman [32 h] | 03 | 03 |
| HAL-E-SS-M-630 |  | GROUND FLOOR WATER SUPPLY PLAN | 1.5d | 2026-01-17 A | 2026-01-17 A | HAL-E-SS-M-620 | 100% | 2026-02-23 | 2026-02-24 | Engineer [32 h]; Draftman [32 h] | 03 | 03 |
| HAL-E-SS-M-640 |  | TOILET DETAILS PLUMBING-WATER | 1.5d | 2026-01-17 A | 2026-01-17 A | HAL-E-SS-M-630 | 100% | 2026-02-23 | 2026-02-24 | Engineer [32 h]; Draftman [32 h] | 03 | 03 |
| HAL-E-SS-M-680 |  | GENERAL MISELLANEOUS DETAILS PLUMBING | 2d | 2026-01-17 A | 2026-01-17 A | HAL-E-SS-M-670 | 100% | 2026-03-04 | 2026-03-07 | Engineer [32 h]; Draftman [32 h] | 03 | 03 |
| HAL-E-SS-M-690 |  | SCHEDULE- PLUMBING | 4d | 2026-01-17 A | 2026-01-17 A | HAL-E-SS-M-680 | 100% | 2026-03-07 | 2026-03-11 | Engineer [32 h]; Draftman [32 h] | 03 | 03 |
| HAL-E-SS-M-750 |  | GENERAL-INSTRUMENTATION & CONTROL | 2d | 2026-01-17 A | 2026-01-17 A | HAL-E-SS-M-740 | 100% | 2026-03-26 | 2026-03-29 | Engineer [32 h]; Draftman [32 h] | 03 | 03 |
| HAL-E-SS-M-770 |  | TYPICAL GROUND FLOOR PLAN FIREFIGHTING | 2d | 2026-01-17 A | 2026-01-17 A | HAL-E-SS-M-760 | 100% | 2026-04-02 | 2026-04-05 | Engineer [32 h]; Draftman [32 h] | 03 | 03 |
| HAL-E-SS-M-800 |  | MISCELLANEOUS DETAILS | 2d | 2026-01-17 A | 2026-01-17 A | HAL-E-SS-M-790 | 100% | 2026-04-05 | 2026-04-07 | Engineer [32 h]; Draftman [32 h] | 03 | 03 |
| HAL-E-SS-M-620 |  | TYPICAL ROOF PLUMBING PLAN | 2d | 2026-01-20 A | 2026-01-20 A | HAL-E-SS-M-610 | 100% | 2026-02-17 | 2026-02-19 | Engineer [32 h]; Draftman [32 h] | 03 | 03 |
| HAL-E-SS-M-650 |  | SCHEMATIC RISER DIAGRAM PLUMBING-DRAINAGE | 1.62d | 2026-01-20 A | 2026-01-20 A | HAL-E-SS-M-640 | 100% | 2026-02-19 | 2026-02-21 | Engineer [32 h]; Draftman [32 h] | 03 | 03 |
| HAL-E-SS-M-660 |  | SCHEMATIC RISER DIAGRAM PLUMBING-WATER | 1.5d | 2026-01-20 A | 2026-01-20 A | HAL-E-SS-M-650 | 100% | 2026-02-23 | 2026-02-24 | Engineer [32 h]; Draftman [32 h] | 03 | 03 |
| HAL-E-SS-M-670 |  | GENERAL MISELLANEOUS DETAILS PLUMBING | 2d | 2026-01-20 A | 2026-01-20 A | HAL-E-SS-M-660 | 100% | 2026-02-24 | 2026-02-26 | Engineer [32 h]; Draftman [32 h] | 03 | 03 |
| HAL-E-SS-M-720 |  | SCHEDULES | 2d | 2026-01-20 A | 2026-01-20 A | HAL-E-SS-M-710 | 100% | 2026-03-04 | 2026-03-07 | Engineer [32 h]; Draftman [32 h] | 03 | 03 |
| HAL-E-SS-M-760 |  | GENERAL MISCELLANEOUS DETAILS - HVAC | 1.62d | 2026-01-20 A | 2026-01-20 A | HAL-E-SS-M-750 | 100% | 2026-02-23 | 2026-02-24 | Engineer [32 h]; Draftman [32 h] | 03 | 03 |
| HAL-E-SS-M-780 |  | SCHEMATIC RISER DIAGRAM FIREFIGHTING | 2d | 2026-01-20 A | 2026-01-20 A | HAL-E-SS-M-770 | 100% | 2026-03-14 | 2026-03-16 | Engineer [32 h]; Draftman [32 h] | 03 | 03 |
| HAL-E-SS-M-790 |  | GENERAL-MISCELLANEOUS DETAILS- FIRE FIGHTING | 4d | 2026-01-20 A | 2026-01-20 A | HAL-E-SS-M-780 | 100% | 2026-03-16 | 2026-03-22 | Engineer [32 h]; Draftman [32 h] | 03 | 03 |
| HAL-E-SS-M-700 |  | PUMP ROOM LAYOUT | 2d | 2026-02-01 A | 2026-02-01 A | HAL-E-SS-M-690 | 100% | 2026-02-14 | 2026-02-15 | Engineer [32 h]; Draftman [32 h] | 03 | 03 |
| HAL-E-SS-M-710 |  | PUMP ROOM 3D & SECTIONS VIEW | 1.62d | 2026-02-01 A | 2026-02-01 A | HAL-E-SS-M-700 | 100% | 2026-02-16 | 2026-02-17 | Engineer [32 h]; Draftman [32 h] | 03 | 03 |
| HAL-E-SS-M-730 |  | GROUND FLOOR PLAN-HVAC SYSTEM | 1.5d | 2026-02-03 A | 2026-02-03 A | HAL-E-SS-M-720 | 100% | 2026-02-17 | 2026-02-19 | Engineer [32 h]; Draftman [32 h] | 03 | 03 |
| HAL-E-SS-M-740 |  | TYPICAL ROOF HVAC PLAN | 1.5d | 2026-02-03 A | 2026-02-03 A | HAL-E-SS-M-730 | 100% | 2026-02-19 | 2026-02-21 | Engineer [32 h]; Draftman [32 h] | 03 | 03 |
|  | 4 | **ELECTRICAL** |  | 2025-12-22 | 2026-02-07 |  |  |  |  |  |  |  |
| HAL-E-SS-E-1150 |  | GROUND FLOOR LIGHTING PLAN | 2d | 2025-12-22 A | 2025-12-22 A | HAL-E-SS-E-1140 | 100% | 2026-04-25 | 2026-04-27 | Engineer [32 h]; Draftman [32 h] | 03 | 04 |
| HAL-E-SS-E-940 |  | GROUND FLOOR POWER PLAN | 4d | 2025-12-22 A | 2025-12-22 A | HAL-E-SS-M-600 | 100% | 2026-03-01 | 2026-03-05 | Engineer [32 h]; Draftman [32 h] | 03 | 04 |
| HAL-E-SS-E-1000 |  | ROOF FLOOR LIGHTING PLAN | 2d | 2025-12-24 A | 2025-12-24 A | HAL-E-SS-E-990 | 100% | 2026-03-21 | 2026-03-23 | Engineer [32 h]; Draftman [32 h] | 03 | 04 |
| HAL-E-SS-E-1140 |  | POWER FOR MECHANICAL | 2d | 2025-12-24 A | 2025-12-24 A | HAL-E-SS-E-1130 | 100% | 2026-04-22 | 2026-04-25 | Engineer [32 h]; Draftman [32 h] | 03 | 04 |
| HAL-E-SS-E-950 |  | GROUND FLOOR POWER FOR MECHANICAL | 2d | 2025-12-24 A | 2025-12-24 A | HAL-E-SS-E-940 | 100% | 2026-03-05 | 2026-03-08 | Engineer [32 h]; Draftman [32 h] | 03 | 04 |
| HAL-E-SS-E-1070 |  | POWER RISER DIAGRAM | 2d | 2026-01-10 A | 2026-01-10 A | HAL-E-SS-E-1060 | 100% | 2026-03-02 | 2026-03-04 | Engineer [32 h]; Draftman [32 h] | 03 | 04 |
| HAL-E-SS-E-1030 |  | GROUND FLOOR CCTV PLAN | 2d | 2026-01-13 A | 2026-01-13 A | HAL-E-SS-E-1020 | 100% | 2026-03-04 | 2026-03-07 | Engineer [32 h]; Draftman [32 h] | 03 | 04 |
| HAL-E-SS-E-1040 |  | GROUND FLOOR DATA & TELECOM PLAN | 2d | 2026-01-13 A | 2026-01-13 A | HAL-E-SS-E-1030 | 100% | 2026-03-07 | 2026-03-09 | Engineer [32 h]; Draftman [32 h] | 03 | 04 |
| HAL-E-SS-E-1060 |  | ROOF FLOOR LIGHTENING PLAN | 2d | 2026-01-13 A | 2026-01-13 A | HAL-E-SS-E-1050 | 100% | 2026-02-28 | 2026-03-02 | Engineer [32 h]; Draftman [32 h] | 03 | 04 |
| HAL-E-SS-E-1110 |  | SCHEDULES | 2d | 2026-01-13 A | 2026-01-13 A | HAL-E-SS-E-1100 | 100% | 2026-03-24 | 2026-03-26 | Engineer [32 h]; Draftman [32 h] | 03 | 04 |
| HAL-E-SS-E-1130 |  | GROUND FLOOR POWER PLAN | 2d | 2026-01-13 A | 2026-01-13 A | HAL-E-SS-E-1120 | 100% | 2026-03-09 | 2026-03-11 | Engineer [32 h]; Draftman [32 h] | 03 | 04 |
| HAL-E-SS-E-960 |  | ROOF FLOOR POWER FOR MECHANICAL | 2d | 2026-01-13 A | 2026-01-13 A | HAL-E-SS-E-950 | 100% | 2026-02-14 | 2026-02-15 | Engineer [32 h]; Draftman [32 h] | 03 | 04 |
| HAL-E-SS-E-990 |  | GROUND FLOOR LIGHTING PLAN | 1.5d | 2026-01-13 A | 2026-01-13 A | HAL-E-SS-E-980 | 100% | 2026-02-19 | 2026-02-21 | Engineer [32 h]; Draftman [32 h] | 03 | 04 |
| HAL-E-SS-E-1020 |  | GROUND FLOOR FIRE ALARM PLAN | 2d | 2026-01-21 A | 2026-01-21 A | HAL-E-SS-E-1010 | 100% | 2026-03-02 | 2026-03-04 | Engineer [32 h]; Draftman [32 h] | 03 | 04 |
| HAL-E-SS-E-1050 |  | GROUND FLOOR GROUNDING PLAN | 2d | 2026-01-21 A | 2026-01-21 A | HAL-E-SS-E-1040 | 100% | 2026-02-24 | 2026-02-28 | Engineer [32 h]; Draftman [32 h] | 03 | 04 |
| HAL-E-SS-E-1080 |  | FIRE ALARM RISER DIAGRAM | 2d | 2026-01-21 A | 2026-01-21 A | HAL-E-SS-E-1070 | 100% | 2026-03-09 | 2026-03-11 | Engineer [32 h]; Draftman [32 h] | 03 | 04 |
| HAL-E-SS-E-1160 |  | GROUND FLOOR GROUNDING PLAN | 2d | 2026-01-21 A | 2026-01-21 A | HAL-E-SS-E-1150 | 100% | 2026-03-24 | 2026-03-26 | Engineer [32 h]; Draftman [32 h] | 03 | 04 |
| HAL-E-SS-E-1090 |  | DATA & TELECOME RISER DIAGRAM | 2d | 2026-02-04 A | 2026-02-04 A | HAL-E-SS-E-1080 | 100% | 2026-03-02 | 2026-03-04 | Engineer [32 h]; Draftman [32 h] | 03 | 04 |
| HAL-E-SS-E-1100 |  | ACCESS CONTROL RISER DIAGRAM | 2d | 2026-02-04 A | 2026-02-04 A | HAL-E-SS-E-1090 | 100% | 2026-03-04 | 2026-03-07 | Engineer [32 h]; Draftman [32 h] | 03 | 04 |
| HAL-E-SS-E-1170 |  | RISER DIAGRAM | 2d | 2026-02-04 A | 2026-02-04 A | HAL-E-SS-E-1160 | 100% | 2026-03-11 | 2026-03-14 | Engineer [32 h]; Draftman [32 h] | 03 | 04 |
| HAL-E-SS-E-1010 |  | GOUND FLOOR ACCESS CONTROL | 1.62d | 2026-02-05 A | 2026-02-05 A | HAL-E-SS-E-1000 | 100% | 2026-02-23 | 2026-02-24 | Engineer [32 h]; Draftman [32 h] | 03 | 04 |
| HAL-E-SS-E-1120 |  | ELECTRICAL DETAILS | 2d | 2026-02-07 A | 2026-02-07 A | HAL-E-SS-E-1110 | 100% | 2026-02-28 | 2026-03-02 | Engineer [32 h]; Draftman [32 h] | 03 | 04 |
| HAL-E-SS-E-1180 |  | ELECTRICAL DETAILS | 2d | 2026-02-07 A | 2026-02-07 A | HAL-E-SS-E-1170 | 100% | 2026-03-02 | 2026-03-04 | Engineer [32 h]; Draftman [32 h] | 03 | 04 |
| HAL-E-SS-E-970 |  | ROOF FLOOR POWER | 1.62d | 2026-02-07 A | 2026-02-07 A | HAL-E-SS-E-960 | 100% | 2026-02-23 | 2026-02-25 | Engineer [32 h]; Draftman [32 h] | 03 | 04 |
| HAL-E-SS-E-980 |  | PV SYSTEM CALCULATION | 1.5d | 2026-02-07 A | 2026-02-07 A | HAL-E-SS-E-970 | 100% | 2026-02-25 | 2026-02-26 | Engineer [32 h]; Draftman [32 h] | 03 | 04 |

| ID | WBS | Activity | Duration | Start | Finish | Predecessors | Complete | Planned start | Planned finish | Resources | Phasing Code Category | Discipline |
| --- | --- | --- | --- | --- | --- | --- | --- | --- | --- | --- | --- | --- |
|  | 1 | **ROAD DRAWINGS** |  | 2025-12-11 | 2026-02-04 |  |  |  |  |  |  |  |
| HAL-E-SS-R-780 |  | TOPOGRAPHIC SURVEY-CONTOURS MAP | 2d | 2025-12-11 A | 2025-12-11 A | HAL-E-SS-R-770 | 100% | 2026-02-04 | 2026-02-05 | Engineer [16 h]; Draftman [16 h] | 03 | 06 |
| HAL-E-SS-R-730 |  | GRADING LAYOUT PLAN | 2d | 2025-12-18 A | 2025-12-18 A | HAL-MOB-SO.0016 | 100% | 2026-01-24 | 2026-01-25 | Engineer [32 h]; Draftman [32 h] | 03 | 06 |
| HAL-E-SS-R-740 |  | ROAD LAYOUT PLAN | 2d | 2026-01-14 A | 2026-01-14 A | HAL-E-SS-R-730 | 100% | 2026-01-26 | 2026-01-27 | Engineer [32 h]; Draftman [32 h] | 03 | 06 |
| HAL-E-SS-R-820 |  | SWEPT PATH LAYOUT PLAN | 2d | 2026-01-14 A | 2026-02-04 A | HAL-E-SS-R-810 | 100% | 2026-02-15 | 2026-02-16 | Engineer [16 h]; Draftman [16 h] | 03 | 06 |
| HAL-E-SS-R-840 |  | ROAD STANDARD DETAILS-TYPICAL PAVEMENT DETAILS | 2d | 2026-01-14 A | 2026-01-14 A | HAL-E-SS-R-830 | 100% | 2026-02-17 | 2026-02-19 | Engineer [16 h]; Draftman [16 h] | 03 | 06 |
| HAL-E-SS-R-850 |  | ROAD STANDARD DETAILS-TYPICAL CURB DETAILS | 2d | 2026-01-14 A | 2026-01-14 A | HAL-E-SS-R-840 | 100% | 2026-02-19 | 2026-02-23 | Engineer [16 h]; Draftman [16 h] | 03 | 06 |
| HAL-E-SS-R-860 |  | ROAD STANDARD DETAILS-ROAD SIGN DETAILS | 2d | 2026-01-14 A | 2026-01-14 A | HAL-E-SS-R-850 | 100% | 2026-02-23 | 2026-02-25 | Engineer [16 h]; Draftman [16 h] | 03 | 06 |
| HAL-E-SS-R-870 |  | ROAD STANDARD DETAILS-ROAD MARKING DETAILS | 1.12d | 2026-01-14 A | 2026-01-14 A | HAL-E-SS-R-860 | 100% | 2026-02-25 | 2026-02-26 | Engineer [16 h]; Draftman [16 h] | 03 | 06 |
| HAL-E-SS-R-750 |  | TYPICAL CROSS SECTIONS - KEY PLAN | 2d | 2026-01-18 A | 2026-01-18 A | HAL-E-SS-R-740 | 100% | 2026-01-28 | 2026-01-29 | Engineer [32 h]; Draftman [32 h] | 03 | 06 |
| HAL-E-SS-R-760 |  | TYPICAL CROSS SECTIONS | 2d | 2026-01-18 A | 2026-01-18 A | HAL-E-SS-R-750 | 100% | 2026-01-31 | 2026-02-01 | Engineer [32 h]; Draftman [32 h] | 03 | 06 |
| HAL-E-SS-R-880 |  | GENERAL SITE PLAN - OVERALL | 2d | 2026-01-18 A | 2026-01-18 A | HAL-E-SS-R-870 | 100% | 2026-03-04 | 2026-03-07 | Engineer [32 h]; Draftman [32 h] | 03 | 06 |
| HAL-E-SS-R-890 |  | SITE SETTING-OUT PLAN - OVERALL | 2d | 2026-01-18 A | 2026-01-18 A | HAL-E-SS-R-880 | 100% | 2026-03-07 | 2026-03-09 | Engineer [32 h]; Draftman [32 h] | 03 | 06 |
| HAL-E-SS-R-770 |  | ROAD PROFILES | 2d | 2026-01-20 A | 2026-01-20 A | HAL-E-SS-R-760 | 100% | 2026-02-02 | 2026-02-03 | Engineer [16 h]; Draftman [16 h] | 03 | 06 |
| HAL-E-SS-R-800 |  | ALIGNMENT & CURB SETTING OUT TABLES | 2d | 2026-01-20 A | 2026-01-20 A | HAL-E-SS-R-790 | 100% | 2026-02-07 | 2026-02-08 | Engineer [16 h]; Draftman [16 h] | 03 | 06 |
| HAL-E-SS-R-810 |  | ALIGNMNET GEOMETRIC DATA | 2d | 2026-01-20 A | 2026-01-20 A | HAL-E-SS-R-800 | 100% | 2026-02-09 | 2026-02-10 | Engineer [16 h]; Draftman [16 h] | 03 | 06 |
| HAL-E-SS-R-920 |  | GENERAL SOFTSCAPE LAYOUT | 4d | 2026-01-20 A | 2026-01-20 A | HAL-E-SS-R-910 | 100% | 2026-03-16 | 2026-03-22 | Engineer [32 h]; Draftman [32 h] | 03 | 06 |
| HAL-E-SS-R-790 |  | ALIGNMENT & CURB SETTING OUT | 5d | 2026-01-21 A | 2026-01-21 A | HAL-E-SS-R-780 | 100% | 2026-02-07 | 2026-02-11 | Engineer [16 h]; Draftman [16 h] | 03 | 06 |
| HAL-E-SS-R-830 |  | SIGNING & MARKING LAYOUT PLAN | 1.62d | 2026-01-21 A | 2026-01-21 A | HAL-E-SS-R-820 | 100% | 2026-02-19 | 2026-02-21 | Engineer [16 h]; Draftman [16 h] | 03 | 06 |
| HAL-E-SS-R-900 |  | GENERAL LANDSCAPE LAYOUT | 2d | 2026-01-21 A | 2026-01-21 A | HAL-E-SS-R-890 | 100% | 2026-03-09 | 2026-03-11 | Engineer [32 h]; Draftman [32 h] | 03 | 06 |
| HAL-E-SS-R-910 |  | GENERAL HARDSCAPE LAYOUT | 4d | 2026-01-21 A | 2026-01-21 A | HAL-E-SS-R-900 | 100% | 2026-03-11 | 2026-03-16 | Engineer [32 h]; Draftman [32 h] | 03 | 06 |
| HAL-E-SS-R-930 |  | PUMP ROOM DETAILS | 1.62d | 2026-01-22 A | 2026-01-22 A | HAL-E-SS-R-920 | 100% | 2026-02-23 | 2026-02-24 | Engineer [32 h]; Draftman [32 h] | 03 | 06 |
| HAL-E-SS-R-940 |  | GENERAL DETAILS | 2d | 2026-02-04 A | 2026-02-04 A | HAL-E-SS-R-930 | 100% | 2026-02-24 | 2026-02-28 | Engineer [32 h]; Draftman [32 h] | 03 | 06 |
| HAL-E-SS-R-950 |  | LANDSCAPE DETAILS | 2d | 2026-02-04 A | 2026-02-04 A | HAL-E-SS-R-940 | 100% | 2026-02-28 | 2026-03-02 | Engineer [32 h]; Draftman [32 h] | 03 | 06 |
| HAL-E-SS-R-960 |  | LANDSCAPE SCHEDULES | 2d | 2026-02-04 A | 2026-02-04 A | HAL-E-SS-R-950 | 100% | 2026-03-02 | 2026-03-04 | Draftman [32 h]; Engineer [32 h] | 03 | 06 |

| ID | WBS | Activity | Duration | Start | Finish | Predecessors | Complete | Planned start | Planned finish | Resources | Phasing Code Category | Discipline |
| --- | --- | --- | --- | --- | --- | --- | --- | --- | --- | --- | --- | --- |
|  | 6 | **EXTERNAL** |  | 2026-01-17 | 2026-01-28 |  |  |  |  |  |  |  |
| HAL-E-SS-EX-1000 |  | WASHOUT CHAMBER DETAILS | 2d | 2026-01-17 A | 2026-01-17 A | HAL-E-SS-EX-990 | 100% | 2026-04-23 | 2026-04-26 | Engineer [32 h]; Draftman [32 h] | 03 | 06 |
| HAL-E-SS-EX-1010 |  | AIR RELEASE VALVE CHAMBER DETAILS | 2d | 2026-01-17 A | 2026-01-17 A | HAL-E-SS-EX-1000 | 100% | 2026-04-26 | 2026-04-28 | Engineer [32 h]; Draftman [32 h] | 03 | 06 |
| HAL-E-SS-EX-1020 |  | THRUST BLOCK DETAILS (SHEET 1 OF 4) | 2d | 2026-01-17 A | 2026-01-17 A | HAL-E-SS-EX-1010 | 100% | 2026-04-28 | 2026-04-30 | Engineer [64 h]; Draftman [64 h] | 03 | 06 |
| HAL-E-SS-EX-1030 |  | THRUST BLOCK DETAILS (SHEET 2 OF 4) | 2d | 2026-01-17 A | 2026-01-17 A | HAL-E-SS-EX-1020 SS | 100% | 2026-04-28 | 2026-04-30 | Engineer [64 h]; Draftman [64 h] | 03 | 06 |
| HAL-E-SS-EX-1040 |  | THRUST BLOCK DETAILS (SHEET 3 OF 4) | 2d | 2026-01-17 A | 2026-01-17 A | HAL-E-SS-EX-1030 SS | 100% | 2026-04-28 | 2026-04-30 | Engineer [64 h]; Draftman [64 h] | 03 | 06 |
| HAL-E-SS-EX-1050 |  | THRUST BLOCK DETAILS (SHEET 4 OF 4) | 2d | 2026-01-17 A | 2026-01-17 A | HAL-E-SS-EX-1040 SS | 100% | 2026-04-28 | 2026-04-30 | Engineer [64 h]; Draftman [64 h] | 03 | 06 |
| HAL-E-SS-EX-760 |  | DOUBLE VALVE CHAMBER DETAILS | 2d | 2026-01-17 A | 2026-01-17 A | HAL-E-SS-EX-750 | 100% | 2026-03-09 | 2026-03-11 | Engineer [32 h]; Draftman [32 h] | 03 | 06 |
| HAL-E-SS-EX-800 |  | FLOW METER REINFORCEMENT DETAILS | 2d | 2026-01-17 A | 2026-01-17 A | HAL-E-SS-EX-790 | 100% | 2026-03-22 | 2026-03-24 | Engineer [32 h]; Draftman [32 h] | 03 | 06 |
| HAL-E-SS-EX-810 |  | THRUST BLOCK DETAILS (SHEET 1 OF 4) | 2d | 2026-01-17 A | 2026-01-17 A | HAL-E-SS-EX-800 | 100% | 2026-03-24 | 2026-03-26 | Engineer [32 h]; Draftman [32 h] | 03 | 06 |
| HAL-E-SS-EX-820 |  | THRUST BLOCK DETAILS (SHEET 2 OF 4) | 2d | 2026-01-17 A | 2026-01-17 A | HAL-E-SS-EX-810 SS | 100% | 2026-03-24 | 2026-03-26 | Engineer [32 h]; Draftman [32 h] | 03 | 06 |
| HAL-E-SS-EX-830 |  | THRUST BLOCK DETAILS (SHEET 3 OF 4) | 2d | 2026-01-17 A | 2026-01-17 A | HAL-E-SS-EX-820 SS | 100% | 2026-03-24 | 2026-03-26 | Engineer [32 h]; Draftman [32 h] | 03 | 06 |
| HAL-E-SS-EX-840 |  | THRUST BLOCK DETAILS (SHEET 4 OF 4) | 2d | 2026-01-17 A | 2026-01-17 A | HAL-E-SS-EX-830 SS | 100% | 2026-03-24 | 2026-03-26 | Engineer [32 h]; Draftman [32 h] | 03 | 06 |
| HAL-E-SS-EX-870 |  | GENERAL NOTES | 2d | 2026-01-17 A | 2026-01-17 A | HAL-E-SS-EX-860 | 100% | 2026-03-31 | 2026-04-02 | Engineer [32 h]; Draftman [32 h] | 03 | 06 |
| HAL-E-SS-EX-880 |  | PIPE TRENCHES DETAILS (1) | 2d | 2026-01-17 A | 2026-01-17 A | HAL-E-SS-EX-870 | 100% | 2026-04-02 | 2026-04-05 | Engineer [32 h]; Draftman [32 h] | 03 | 06 |
| HAL-E-SS-EX-890 |  | PIPE TRENCHES DETAILS (2) | 2d | 2026-01-17 A | 2026-01-17 A | HAL-E-SS-EX-880 | 100% | 2026-04-05 | 2026-04-07 | Engineer [32 h]; Draftman [32 h] | 03 | 06 |
| HAL-E-SS-EX-910 |  | CAST IN PLACE MANHOLE DETAILS FOR DEPTH < 6000MM (TYPE-B) | 2d | 2026-01-17 A | 2026-01-17 A | HAL-E-SS-EX-900 SS | 100% | 2026-04-07 | 2026-04-09 | Engineer [32 h]; Draftman [32 h] | 03 | 06 |
| HAL-E-SS-EX-930 |  | BACKDROP DETAIL OF PRECAST MANHOLE DEPTH FROM 3000MM TO 6000MM | 2d | 2026-01-17 A | 2026-01-17 A | HAL-E-SS-EX-920 SS | 100% | 2026-04-07 | 2026-04-09 | Engineer [32 h]; Draftman [32 h] | 03 | 06 |
| HAL-E-SS-EX-940 |  | PRECAST MANHOLE DETAILS | 2d | 2026-01-17 A | 2026-01-17 A | HAL-E-SS-EX-930 | 100% | 2026-04-09 | 2026-04-12 | Engineer [32 h]; Draftman [32 h] | 03 | 06 |
| HAL-E-SS-EX-960 |  | PIPE TRENCH DETAILS | 2d | 2026-01-17 A | 2026-01-17 A | HAL-E-SS-EX-950 | 100% | 2026-04-14 | 2026-04-16 | Engineer [32 h]; Draftman [32 h] | 03 | 06 |
| HAL-E-SS-EX-970 |  | BURIED GATE VALVE DETAILS | 2d | 2026-01-17 A | 2026-01-17 A | HAL-E-SS-EX-960 | 100% | 2026-04-16 | 2026-04-19 | Engineer [32 h]; Draftman [32 h] | 03 | 06 |
| HAL-E-SS-EX-990 |  | DOUBLE VALVE CHAMBER DETAILS | 2d | 2026-01-17 A | 2026-01-17 A | HAL-E-SS-EX-980 | 100% | 2026-04-21 | 2026-04-23 | Engineer [32 h]; Draftman [32 h] | 03 | 06 |
| HAL-E-SS-EX-730 |  | PIPE TRENCH DETAILS | 2d | 2026-01-20 A | 2026-01-20 A | HAL-E-SS-EX-720 | 100% | 2026-03-02 | 2026-03-04 | Engineer [32 h]; Draftman [32 h] | 03 | 06 |
| HAL-E-SS-EX-740 |  | BURIED GATE VALVE DETAILS | 2d | 2026-01-20 A | 2026-01-20 A | HAL-E-SS-EX-730 | 100% | 2026-03-04 | 2026-03-07 | Engineer [32 h]; Draftman [32 h] | 03 | 06 |
| HAL-E-SS-EX-750 |  | SINGLE VALVE CHAMBER DETAILS | 2d | 2026-01-21 A | 2026-01-21 A | HAL-E-SS-EX-740 | 100% | 2026-03-07 | 2026-03-09 | Engineer [32 h]; Draftman [32 h] | 03 | 06 |
| HAL-E-SS-EX-770 |  | WASHOUT CHAMBER DETAILS | 2d | 2026-01-21 A | 2026-01-21 A | HAL-E-SS-EX-760 | 100% | 2026-03-09 | 2026-03-11 | Engineer [32 h]; Draftman [32 h] | 03 | 06 |
| HAL-E-SS-EX-780 |  | AIR RELEASE VALVE CHAMBER DETAILS | 2d | 2026-01-21 A | 2026-01-21 A | HAL-E-SS-EX-770 | 100% | 2026-03-11 | 2026-03-14 | Engineer [32 h]; Draftman [32 h] | 03 | 06 |
| HAL-E-SS-EX-900 |  | CAST IN PLACE MANHOLE DETAILS FOR DEPTH < 6000MM (TYPE-A) | 2d | 2026-01-21 A | 2026-01-21 A | HAL-E-SS-EX-890 | 100% | 2026-03-09 | 2026-03-11 | Engineer [32 h]; Draftman [32 h] | 03 | 06 |
| HAL-E-SS-EX-920 |  | BACKDROP DETAIL OF PRECAST MANHOLE DEPTH < 3000MM | 2d | 2026-01-21 A | 2026-01-21 A | HAL-E-SS-EX-910 SS | 100% | 2026-03-09 | 2026-03-11 | Engineer [32 h]; Draftman [32 h] | 03 | 06 |
| HAL-E-SS-EX-980 |  | SINGLE VALVE CHAMBER DETAILS | 1.5d | 2026-01-21 A | 2026-01-21 A | HAL-E-SS-EX-970 | 100% | 2026-02-19 | 2026-02-21 | Engineer [32 h]; Draftman [32 h] | 03 | 06 |
| HAL-E-SS-EX-690 |  | POTABLE WATER NETWORK | 3.62d | 2026-01-28 A | 2026-01-28 A | HAL-E-SS-R-730, HAL-E-SS-A-830 | 100% | 2026-02-17 | 2026-02-21 | Engineer [16 h]; Draftman [16 h] | 03 | 06 |
| HAL-E-SS-EX-700 |  | FIRE FIGHTING WATER NETWORK | 1.5d | 2026-01-28 A | 2026-01-28 A | HAL-E-SS-EX-690 | 100% | 2026-02-23 | 2026-02-24 | Engineer [32 h]; Draftman [32 h] | 03 | 06 |
| HAL-E-SS-EX-710 |  | POTABLE WATER NETWORK PROFILES | 2d | 2026-01-28 A | 2026-01-28 A | HAL-E-SS-EX-700 | 100% | 2026-02-23 | 2026-02-25 | Engineer [32 h]; Draftman [32 h] | 03 | 06 |
| HAL-E-SS-EX-720 |  | FIRE FIGHTING NETWORK PROFILE | 1.62d | 2026-01-28 A | 2026-01-28 A | HAL-E-SS-EX-710 | 100% | 2026-02-25 | 2026-02-28 | Engineer [32 h]; Draftman [32 h] | 03 | 06 |
| HAL-E-SS-EX-790 |  | FLOW METER DETAILS | 1.5d | 2026-01-28 A | 2026-01-28 A | HAL-E-SS-EX-780 | 100% | 2026-02-28 | 2026-03-02 | Engineer [32 h]; Draftman [32 h] | 03 | 06 |
| HAL-E-SS-EX-850 |  | SEWAGE NETWORK | 2d | 2026-01-28 A | 2026-01-28 A | HAL-E-SS-EX-840 | 100% | 2026-03-02 | 2026-03-04 | Engineer [32 h]; Draftman [32 h] | 03 | 06 |
| HAL-E-SS-EX-860 |  | SEWAGE NETWORK PROFILES | 2d | 2026-01-28 A | 2026-01-28 A | HAL-E-SS-EX-850 | 100% | 2026-03-04 | 2026-03-07 | Engineer [32 h]; Draftman [32 h] | 03 | 06 |
| HAL-E-SS-EX-950 |  | IRRIGATION NETWORK LAYOUT SHEET 1 OF 1 | 2d | 2026-01-28 A | 2026-01-28 A | HAL-E-SS-EX-940 | 100% | 2026-03-09 | 2026-03-11 | Engineer [32 h]; Draftman [32 h] | 03 | 06 |

| ID | WBS | Activity | Duration | Start | Finish | Predecessors | Complete | Planned start | Planned finish | Resources | Phasing Code Category | Discipline |
| --- | --- | --- | --- | --- | --- | --- | --- | --- | --- | --- | --- | --- |
|  | 2 | **REVIEW AND APPROVAL** |  | 2025-12-11 | 2026-03-29 |  |  |  |  |  |  |  |
|  | 5 | **STRUCTURAL** |  | 2025-12-24 | 2026-03-29 |  |  |  |  |  |  |  |
| HAL-E-SA-C-830 |  | SECTIONS | 0.62d | 2025-12-24 A | 2026-01-17 A | HAL-E-SS-C-830 | 100% | 2026-02-23 | 2026-02-23 | Engineer; Draftman | 03 | 01 |
| HAL-E-SA-C-840 |  | EXTERNAL WALL SECTION DETAILS | 2d | 2025-12-24 A | 2026-01-17 A | HAL-E-SS-C-840 | 100% | 2026-02-23 | 2026-02-25 | Engineer; Draftman | 03 | 01 |
| HAL-E-SA-C-750 |  | FOUNDATION LAYOUT | 2d | 2025-12-30 A | 2026-01-08 A | HAL-E-SS-C-750 | 100% | 2026-01-24 | 2026-01-25 | Draftman; Engineer | 03 | 01 |
| HAL-E-SA-C-820 |  | COLUMNS AND AXIS LAYOUT | 2d | 2026-01-01 A | 2026-01-08 A | HAL-E-SS-C-820 | 100% | 2026-02-10 | 2026-02-11 | Engineer; Draftman | 03 | 01 |
| HAL-E-SA-C-860 |  | TYPICAL STRUCTURAL SECTION DETAILS | 1.62d | 2026-01-01 A | 2026-01-04 A | HAL-E-SS-C-860 | 100% | 2026-02-19 | 2026-02-21 | Engineer; Draftman | 03 | 01 |
| HAL-E-SA-C-870 |  | STRUCTURAL SCHEDULE | 1.5d | 2026-01-01 A | 2026-01-08 A | HAL-E-SS-C-870 | 100% | 2026-02-23 | 2026-02-24 | Engineer; Draftman | 03 | 01 |
| HAL-E-SA-C-780 |  | TIE BEAM @ 4500mm EL. | 2d | 2026-01-08 A | 2026-02-28 A | HAL-E-SS-C-780 | 100% | 2026-01-27 | 2026-01-28 | Engineer; Draftman | 03 | 01 |
| HAL-E-SA-C-880 |  | PUMP SHED AND GRP WATER TANK STRUCTURAL DETAILS (1-2) | 2d | 2026-01-22 A | 2026-02-12 A | HAL-E-SS-C-880 | 100% | 2026-03-01 | 2026-03-03 | Engineer; Draftman | 03 | 01 |
| HAL-E-SA-C-890 |  | PUMP SHED AND GRP WATER TANK STRUCTURAL DETAILS (2-2) | 2d | 2026-01-22 A | 2026-02-12 A | HAL-E-SS-C-890 | 100% | 2026-03-03 | 2026-03-05 | Engineer; Draftman | 03 | 01 |
| HAL-E-SA-C-760 |  | GRADE BEAM / SLAB ON GRADE LAYOUT | 2d | 2026-01-28 A | 2026-03-29 A | HAL-E-SS-C-760 | 100% | 2026-02-10 | 2026-02-11 | Engineer; Draftman | 03 | 01 |
| HAL-E-SA-C-770 |  | BASE PLATE LAYOUT | 2d | 2026-02-02 A | 2026-02-05 A | HAL-E-SS-C-770 | 100% | 2026-02-17 | 2026-02-19 | Engineer; Draftman | 03 | 01 |
| HAL-E-SA-C-790 |  | ROOF FRAMING LAYOUT | 2d | 2026-02-02 A | 2026-02-05 A | HAL-E-SS-C-790 | 100% | 2026-02-19 | 2026-02-23 | Engineer; Draftman | 03 | 01 |
| HAL-E-SA-C-800 |  | PURLINS FRAMING LAYOUT | 2d | 2026-02-02 A | 2026-02-05 A | HAL-E-SS-C-800 | 100% | 2026-02-23 | 2026-02-25 | Engineer; Draftman | 03 | 01 |
| HAL-E-SA-C-810 |  | ROOF SHEETING LAYOUT | 1.62d | 2026-02-02 A | 2026-02-05 A | HAL-E-SA-C-800, HAL-E-SS-C-810 | 100% | 2026-02-25 | 2026-02-28 | Engineer; Draftman | 03 | 01 |
| HAL-E-SA-C-850 |  | BASE PLATE DETAILS | 2d | 2026-02-02 A | 2026-02-05 A | HAL-E-SS-C-850 | 100% | 2026-03-01 | 2026-03-02 | Engineer; Draftman | 03 | 01 |
|  | 2 | **ARCHITECTURAL** |  | 2025-12-23 | 2026-03-04 |  |  |  |  |  |  |  |
| HAL-E-SA-A-830 |  | GROUND FLOOR LAYOUT PLAN | 1.12d | 2025-12-23 A | 2025-12-24 A | HAL-E-SS-A-830 | 100% | 2026-02-21 | 2026-02-23 | Engineer; Draftman | 03 | 02 |
| HAL-E-SA-A-840 |  | GROUND FLOOR ENLARGED LAYOUT PLAN | 2d | 2025-12-23 A | 2025-12-24 A | HAL-E-SS-A-840 | 100% | 2026-02-23 | 2026-02-25 | Engineer; Draftman | 03 | 02 |
| HAL-E-SA-A-850 |  | SKYLIGHT DISTRIBUTION - ROOF LAYOUT PLAN | 1.62d | 2025-12-23 A | 2026-01-24 A | HAL-E-SS-A-850 | 100% | 2026-02-16 | 2026-02-17 | Engineer; Draftman | 03 | 02 |
| HAL-E-SA-A-1170 |  | BUILDING SECTIONS | 5d | 2025-12-24 A | 2026-01-17 A | HAL-E-SS-A-1170 | 100% | 2026-02-16 | 2026-02-23 |  | 03 | 02 |
| HAL-E-SA-A-860 |  | ELEVATIONS (SHEET 01 0F 02) | 2d | 2025-12-24 A | 2026-01-15 A | HAL-E-SS-A-860 | 100% | 2026-03-01 | 2026-03-03 | Engineer; Draftman | 03 | 02 |
| HAL-E-SA-A-870 |  | ELEVATIONS (SHEET 01 0F 02) | 2d | 2025-12-24 A | 2026-01-15 A | HAL-E-SS-A-870 | 100% | 2026-03-03 | 2026-03-05 | Engineer; Draftman | 03 | 02 |
| HAL-E-SA-A-880 |  | WALL SECTIONS | 2d | 2025-12-24 A | 2026-01-17 A | HAL-E-SS-A-880 | 100% | 2026-03-05 | 2026-03-08 | Engineer; Draftman | 03 | 02 |
| HAL-E-SA-A-890 |  | CEILING LAYOUT PLAN | 1.62d | 2026-01-11 A | 2026-03-04 A | HAL-E-SS-A-890 | 100% | 2026-02-19 | 2026-02-21 | Engineer; Draftman | 03 | 02 |
| HAL-E-SA-A-900 |  | FINISHING LAYOUT PLAN | 1.5d | 2026-01-11 A | 2026-01-17 A | HAL-E-SS-A-900 | 100% | 2026-02-23 | 2026-02-24 | Engineer; Draftman | 03 | 02 |
| HAL-E-SA-A-910 |  | TOILET DETAILS | 2d | 2026-01-11 A | 2026-01-18 A | HAL-E-SS-A-910 | 100% | 2026-02-24 | 2026-02-26 | Engineer; Draftman | 03 | 02 |
| HAL-E-SA-A-930 |  | MISCELLANEOUS DETAILS - 01 | 2d | 2026-01-21 A | 2026-01-26 A | HAL-E-SS-A-930 | 100% | 2026-02-28 | 2026-03-02 | Engineer; Draftman | 03 | 02 |
| HAL-E-SA-A-940 |  | MISCELLANEOUS DETAILS - 02 | 1.62d | 2026-01-21 A | 2026-01-26 A | HAL-E-SS-A-940 | 100% | 2026-02-23 | 2026-02-24 | Engineer; Draftman | 03 | 02 |
| HAL-E-SA-A-950 |  | SIGNAGE LOCATION PLAN | 2d | 2026-01-21 A | 2026-01-28 A | HAL-E-SS-A-950 | 100% | 2026-03-04 | 2026-03-07 | Engineer; Draftman | 03 | 02 |
| HAL-E-SA-A-960 |  | SIGNAGE DESIGN DETAILS | 2d | 2026-01-21 A | 2026-01-28 A | HAL-E-SS-A-960 | 100% | 2026-03-07 | 2026-03-09 | Engineer; Draftman | 03 | 02 |
| HAL-E-SA-A-920 |  | DOORS & WINDOWS SCHEDULE | 1.5d | 2026-02-04 A | 2026-02-08 A | HAL-E-SS-A-920 | 100% | 2026-02-19 | 2026-02-21 | Engineer; Draftman | 03 | 02 |

| ID | WBS | Activity | Duration | Start | Finish | Predecessors | Complete | Planned start | Planned finish | Resources | Phasing Code Category | Discipline |
| --- | --- | --- | --- | --- | --- | --- | --- | --- | --- | --- | --- | --- |
|  | 3 | **MECHANICAL** |  | 2026-01-14 | 2026-03-02 |  |  |  |  |  |  |  |
| HAL-E-SA-M-600 |  | TYPICAL GROUND FLOOR PLAN-PLUMBING- DRAINAGE | 2d | 2026-01-14 A | 2026-03-02 A | HAL-E-SS-M-600 | 100% | 2026-02-17 | 2026-02-19 | Engineer; Draftman | 03 | 03 |
| HAL-E-SA-M-610 |  | TOILETS DETAILS PLUMBING-DRAINAGE | 2d | 2026-01-17 A | 2026-01-17 A | HAL-E-SS-M-610 | 100% | 2026-02-17 | 2026-02-19 | Engineer; Draftman | 03 | 03 |
| HAL-E-SA-M-630 |  | GROUND FLOOR WATER SUPPLY PLAN | 2d | 2026-01-17 A | 2026-01-20 A | HAL-E-SS-M-630 | 100% | 2026-02-24 | 2026-02-26 | Engineer; Draftman | 03 | 03 |
| HAL-E-SA-M-640 |  | TOILET DETAILS PLUMBING-WATER | 1.62d | 2026-01-17 A | 2026-01-17 A | HAL-E-SS-M-640 | 100% | 2026-02-19 | 2026-02-21 | Engineer; Draftman | 03 | 03 |
| HAL-E-SA-M-680 |  | GENERAL MISELLANEOUS DETAILS PLUMBING | 2d | 2026-01-17 A | 2026-01-17 A | HAL-E-SS-M-680 | 100% | 2026-02-28 | 2026-03-02 | Engineer; Draftman | 03 | 03 |
| HAL-E-SA-M-690 |  | SCHEDULE- PLUMBING | 2d | 2026-01-17 A | 2026-01-17 A | HAL-E-SS-M-690 | 100% | 2026-02-28 | 2026-03-02 | Engineer; Draftman | 03 | 03 |
| HAL-E-SA-M-720 |  | SCHEDULES | 2d | 2026-01-17 A | 2026-01-17 A | HAL-E-SS-M-720 | 100% | 2026-03-07 | 2026-03-09 | Engineer; Draftman | 03 | 03 |
| HAL-E-SA-M-750 |  | GENERAL-INSTRUMENTATION & CONTROL | 2d | 2026-01-17 A | 2026-01-17 A | HAL-E-SS-M-750 | 100% | 2026-03-11 | 2026-03-14 | Engineer; Draftman | 03 | 03 |
| HAL-E-SA-M-770 |  | TYPICAL GROUND FLOOR PLAN FIREFIGHTING | 2d | 2026-01-17 A | 2026-01-28 A | HAL-E-SS-M-770 | 100% | 2026-03-26 | 2026-03-29 | Engineer; Draftman | 03 | 03 |
| HAL-E-SA-M-800 |  | MISCELLANEOUS DETAILS | 2d | 2026-01-17 A | 2026-01-17 A | HAL-E-SS-M-800 | 100% | 2026-03-22 | 2026-03-24 | Engineer; Draftman | 03 | 03 |
| HAL-E-SA-M-620 |  | TYPICAL ROOF PLUMBING PLAN | 1.62d | 2026-01-20 A | 2026-01-20 A | HAL-E-SS-M-620 | 100% | 2026-02-19 | 2026-02-21 | Engineer; Draftman | 03 | 03 |
| HAL-E-SA-M-650 |  | SCHEMATIC RISER DIAGRAM PLUMBING-DRAINAGE | 1.5d | 2026-01-20 A | 2026-01-20 A | HAL-E-SS-M-650 | 100% | 2026-02-23 | 2026-02-24 | Engineer; Draftman | 03 | 03 |
| HAL-E-SA-M-660 |  | SCHEMATIC RISER DIAGRAM PLUMBING-WATER | 2d | 2026-01-20 A | 2026-01-20 A | HAL-E-SS-M-660 | 100% | 2026-02-24 | 2026-02-26 | Engineer; Draftman | 03 | 03 |
| HAL-E-SA-M-670 |  | GENERAL MISELLANEOUS DETAILS PLUMBING | 2d | 2026-01-20 A | 2026-01-20 A | HAL-E-SS-M-670 | 100% | 2026-02-28 | 2026-03-02 | Engineer; Draftman | 03 | 03 |
| HAL-E-SA-M-760 |  | GENERAL MISCELLANEOUS DETAILS - HVAC | 2d | 2026-01-20 A | 2026-01-20 A | HAL-E-SS-M-760 | 100% | 2026-02-24 | 2026-02-28 | Engineer; Draftman | 03 | 03 |
| HAL-E-SA-M-780 |  | SCHEMATIC RISER DIAGRAM FIREFIGHTING | 4d | 2026-01-20 A | 2026-01-20 A | HAL-E-SS-M-780 | 100% | 2026-03-16 | 2026-03-22 | Engineer; Draftman | 03 | 03 |
| HAL-E-SA-M-790 |  | GENERAL-MISCELLANEOUS DETAILS- FIRE FIGHTING | 2d | 2026-01-20 A | 2026-01-20 A | HAL-E-SS-M-790 | 100% | 2026-03-22 | 2026-03-24 | Engineer; Draftman | 03 | 03 |
| HAL-E-SA-M-700 |  | PUMP ROOM LAYOUT | 1.62d | 2026-02-01 A | 2026-02-04 A | HAL-E-SS-M-700 | 100% | 2026-02-16 | 2026-02-17 | Engineer; Draftman | 03 | 03 |
| HAL-E-SA-M-710 |  | PUMP ROOM 3D & SECTIONS VIEW | 1.5d | 2026-02-01 A | 2026-02-04 A | HAL-E-SS-M-710 | 100% | 2026-02-17 | 2026-02-19 | Engineer; Draftman | 03 | 03 |
| HAL-E-SA-M-730 |  | GROUND FLOOR PLAN-HVAC SYSTEM | 1.5d | 2026-02-03 A | 2026-02-12 A | HAL-E-SS-M-730 | 100% | 2026-02-19 | 2026-02-21 | Engineer; Draftman | 03 | 03 |
| HAL-E-SA-M-740 |  | TYPICAL ROOF HVAC PLAN | 1.62d | 2026-02-03 A | 2026-02-05 A | HAL-E-SS-M-740 | 100% | 2026-02-23 | 2026-02-24 | Engineer; Draftman | 03 | 03 |
|  | 4 | **ELECTRICAL** |  | 2025-12-22 | 2026-03-29 |  |  |  |  |  |  |  |
| HAL-E-SA-E-1150 |  | GROUND FLOOR LIGHTING PLAN | 2d | 2025-12-22 A | 2026-01-14 A | HAL-E-SS-E-1150 | 100% | 2026-04-27 | 2026-04-29 | Engineer; Draftman | 03 | 04 |
| HAL-E-SA-E-940 |  | GROUND FLOOR POWER PLAN | 2d | 2025-12-22 A | 2026-01-14 A | HAL-E-SS-E-940 | 100% | 2026-03-05 | 2026-03-08 | Engineer; Draftman | 03 | 04 |
| HAL-E-SA-E-1000 |  | ROOF FLOOR LIGHTING PLAN | 2d | 2025-12-24 A | 2026-01-15 A | HAL-E-SS-E-1000 | 100% | 2026-03-23 | 2026-03-25 | Engineer; Draftman | 03 | 04 |
| HAL-E-SA-E-1140 |  | POWER FOR MECHANICAL | 2d | 2025-12-24 A | 2026-01-15 A | HAL-E-SS-E-1140 | 100% | 2026-04-25 | 2026-04-27 | Engineer; Draftman | 03 | 04 |
| HAL-E-SA-E-950 |  | GROUND FLOOR POWER FOR MECHANICAL | 2d | 2025-12-24 A | 2026-01-15 A | HAL-E-SS-E-950, HAL-E-SA-E-940 | 100% | 2026-03-08 | 2026-03-10 | Engineer; Draftman | 03 | 04 |
| HAL-E-SA-E-1030 |  | GROUND FLOOR CCTV PLAN | 2d | 2026-01-13 A | 2026-01-14 A | HAL-E-SS-E-1030 | 100% | 2026-03-07 | 2026-03-09 | Engineer; Draftman | 03 | 04 |
| HAL-E-SA-E-1040 |  | GROUND FLOOR DATA & TELECOM PLAN | 2d | 2026-01-13 A | 2026-01-14 A | HAL-E-SS-E-1040 | 100% | 2026-03-09 | 2026-03-11 | Engineer; Draftman | 03 | 04 |
| HAL-E-SA-E-1070 |  | POWER RISER DIAGRAM | 2d | 2026-01-13 A | 2026-01-14 A | HAL-E-SS-E-1070 | 100% | 2026-03-04 | 2026-03-07 | Engineer; Draftman | 03 | 04 |
| HAL-E-SA-E-1110 |  | SCHEDULES | 2d | 2026-01-13 A | 2026-01-14 A | HAL-E-SS-E-1110 | 100% | 2026-03-26 | 2026-03-29 | Engineer; Draftman | 03 | 04 |
| HAL-E-SA-E-1130 |  | GROUND FLOOR POWER PLAN | 2d | 2026-01-13 A | 2026-01-14 A | HAL-E-SS-E-1130 | 100% | 2026-03-11 | 2026-03-14 | Engineer; Draftman | 03 | 04 |
| HAL-E-SA-E-960 |  | ROOF FLOOR POWER FOR MECHANICAL | 1.62d | 2026-01-13 A | 2026-01-15 A | HAL-E-SS-E-960 | 100% | 2026-02-16 | 2026-02-17 | Engineer; Draftman | 03 | 04 |
| HAL-E-SA-E-990 |  | GROUND FLOOR LIGHTING PLAN | 1.62d | 2026-01-13 A | 2026-01-14 A | HAL-E-SS-E-990 | 100% | 2026-02-23 | 2026-02-24 | Engineer; Draftman | 03 | 04 |
| HAL-E-SA-E-1060 |  | ROOF FLOOR LIGHTENING PLAN | 2d | 2026-01-15 A | 2026-01-15 A | HAL-E-SS-E-1060 | 100% | 2026-03-02 | 2026-03-04 | Engineer; Draftman | 03 | 04 |
| HAL-E-SA-E-1020 |  | GROUND FLOOR FIRE ALARM PLAN | 2d | 2026-01-21 A | 2026-03-29 A | HAL-E-SS-E-1020 | 100% | 2026-03-04 | 2026-03-07 | Engineer; Draftman | 03 | 04 |
| HAL-E-SA-E-1050 |  | GROUND FLOOR GROUNDING PLAN | 2d | 2026-01-21 A | 2026-02-01 A | HAL-E-SS-E-1050 | 100% | 2026-02-28 | 2026-03-02 | Engineer; Draftman | 03 | 04 |
| HAL-E-SA-E-1080 |  | FIRE ALARM RISER DIAGRAM | 2d | 2026-01-21 A | 2026-03-29 A | HAL-E-SS-E-1080 | 100% | 2026-03-11 | 2026-03-14 | Engineer; Draftman | 03 | 04 |
| HAL-E-SA-E-1160 |  | GROUND FLOOR GROUNDING PLAN | 2d | 2026-01-21 A | 2026-02-01 A | HAL-E-SS-E-1160 | 100% | 2026-03-26 | 2026-03-29 | Engineer; Draftman | 03 | 04 |
| HAL-E-SA-E-1090 |  | DATA & TELECOME RISER DIAGRAM | 2d | 2026-02-04 A | 2026-02-04 A | HAL-E-SS-E-1090 | 100% | 2026-03-04 | 2026-03-07 | Engineer; Draftman | 03 | 04 |
| HAL-E-SA-E-1100 |  | ACCESS CONTROL RISER DIAGRAM | 2d | 2026-02-04 A | 2026-02-04 A | HAL-E-SS-E-1100 | 100% | 2026-03-07 | 2026-03-09 | Engineer; Draftman | 03 | 04 |
| HAL-E-SA-E-1170 |  | RISER DIAGRAM | 2d | 2026-02-04 A | 2026-02-04 A | HAL-E-SS-E-1170 | 100% | 2026-03-14 | 2026-03-16 | Engineer; Draftman | 03 | 04 |
| HAL-E-SA-E-1010 |  | GOUND FLOOR ACCESS CONTROL | 2d | 2026-02-05 A | 2026-02-05 A | HAL-E-SS-E-1010 | 100% | 2026-02-24 | 2026-02-28 | Engineer; Draftman | 03 | 04 |
| HAL-E-SA-E-1120 |  | ELECTRICAL DETAILS | 2d | 2026-02-07 A | 2026-02-28 A | HAL-E-SS-E-1120 | 100% | 2026-03-02 | 2026-03-04 | Engineer; Draftman | 03 | 04 |
| HAL-E-SA-E-1180 |  | ELECTRICAL DETAILS | 2d | 2026-02-07 A | 2026-02-28 A | HAL-E-SS-E-1180 | 100% | 2026-03-04 | 2026-03-07 | Engineer; Draftman | 03 | 04 |
| HAL-E-SA-E-970 |  | ROOF FLOOR POWER | 1.5d | 2026-02-07 A | 2026-02-28 A | HAL-E-SS-E-970 | 100% | 2026-02-25 | 2026-02-26 | Engineer; Draftman | 03 | 04 |
| HAL-E-SA-E-980 |  | PV SYSTEM CALCULATION | 2d | 2026-02-07 A | 2026-02-28 A | HAL-E-SS-E-980 | 100% | 2026-02-28 | 2026-03-02 | Engineer; Draftman | 03 | 04 |

| ID | WBS | Activity | Duration | Start | Finish | Predecessors | Complete | Planned start | Planned finish | Resources | Phasing Code Category | Discipline |
| --- | --- | --- | --- | --- | --- | --- | --- | --- | --- | --- | --- | --- |
|  | 1 | **ROAD DRAWINGS** |  | 2025-12-11 | 2026-02-28 |  |  |  |  |  |  |  |
| HAL-E-SA-R-780 |  | TOPOGRAPHIC SURVEY-CONTOURS MAP | 2d | 2025-12-11 A | 2025-12-13 A | HAL-E-SS-R-780 | 100% | 2026-02-07 | 2026-02-08 | Engineer; Draftman | 03 | 06 |
| HAL-E-SA-R-730 |  | GRADING LAYOUT PLAN | 2d | 2025-12-18 A | 2026-01-04 A | HAL-E-SS-R-730 | 100% | 2026-01-26 | 2026-01-27 | Engineer; Draftman | 03 | 06 |
| HAL-E-SA-R-740 |  | ROAD LAYOUT PLAN | 2d | 2026-01-14 A | 2026-01-22 A | HAL-E-SS-R-740 | 100% | 2026-01-28 | 2026-01-29 | Engineer; Draftman | 03 | 06 |
| HAL-E-SA-R-840 |  | ROAD STANDARD DETAILS-TYPICAL PAVEMENT DETAILS | 2d | 2026-01-14 A | 2026-01-18 A | HAL-E-SS-R-840 | 100% | 2026-02-19 | 2026-02-23 | Engineer; Draftman | 03 | 06 |
| HAL-E-SA-R-850 |  | ROAD STANDARD DETAILS-TYPICAL CURB DETAILS | 2d | 2026-01-14 A | 2026-01-18 A | HAL-E-SS-R-850 | 100% | 2026-02-23 | 2026-02-25 | Engineer; Draftman | 03 | 06 |
| HAL-E-SA-R-860 |  | ROAD STANDARD DETAILS-ROAD SIGN DETAILS | 2d | 2026-01-14 A | 2026-01-18 A | HAL-E-SS-R-860 | 100% | 2026-02-25 | 2026-02-28 | Engineer; Draftman | 03 | 06 |
| HAL-E-SA-R-870 |  | ROAD STANDARD DETAILS-ROAD MARKING DETAILS | 2d | 2026-01-14 A | 2026-01-18 A | HAL-E-SS-R-870 | 100% | 2026-02-28 | 2026-03-02 | Engineer; Draftman | 03 | 06 |
| HAL-E-SA-R-750 |  | TYPICAL CROSS SECTIONS - KEY PLAN | 2d | 2026-01-18 A | 2026-01-22 A | HAL-E-SS-R-750 | 100% | 2026-01-31 | 2026-02-01 | Engineer; Draftman | 03 | 06 |
| HAL-E-SA-R-760 |  | TYPICAL CROSS SECTIONS | 2d | 2026-01-18 A | 2026-01-22 A | HAL-E-SS-R-760 | 100% | 2026-02-02 | 2026-02-03 | Engineer; Draftman | 03 | 06 |
| HAL-E-SA-R-880 |  | GENERAL SITE PLAN - OVERALL | 2d | 2026-01-18 A | 2026-01-18 A | HAL-E-SS-R-880 | 100% | 2026-03-07 | 2026-03-09 | Engineer; Draftman | 03 | 06 |
| HAL-E-SA-R-890 |  | SITE SETTING-OUT PLAN - OVERALL | 2d | 2026-01-18 A | 2026-01-18 A | HAL-E-SS-R-890 | 100% | 2026-03-09 | 2026-03-11 | Engineer; Draftman | 03 | 06 |
| HAL-E-SA-R-770 |  | ROAD PROFILES | 2d | 2026-01-20 A | 2026-01-22 A | HAL-E-SS-R-770 | 100% | 2026-02-04 | 2026-02-05 | Engineer; Draftman | 03 | 06 |
| HAL-E-SA-R-800 |  | ALIGNMENT & CURB SETTING OUT TABLES | 2d | 2026-01-20 A | 2026-01-21 A | HAL-E-SS-R-800 | 100% | 2026-02-09 | 2026-02-10 | Engineer; Draftman | 03 | 06 |
| HAL-E-SA-R-810 |  | ALIGNMNET GEOMETRIC DATA | 2d | 2026-01-20 A | 2026-01-22 A | HAL-E-SS-R-810 | 100% | 2026-02-11 | 2026-02-12 | Engineer; Draftman | 03 | 06 |
| HAL-E-SA-R-920 |  | GENERAL SOFTSCAPE LAYOUT | 2d | 2026-01-20 A | 2026-01-20 A | HAL-E-SS-R-920 | 100% | 2026-03-22 | 2026-03-24 | Engineer; Draftman | 03 | 06 |
| HAL-E-SA-R-790 |  | ALIGNMENT & CURB SETTING OUT | 2d | 2026-01-21 A | 2026-01-21 A | HAL-E-SS-R-790 | 100% | 2026-02-12 | 2026-02-14 | Engineer; Draftman | 03 | 06 |
| HAL-E-SA-R-830 |  | SIGNING & MARKING LAYOUT PLAN | 1.5d | 2026-01-21 A | 2026-01-22 A | HAL-E-SS-R-830 | 100% | 2026-02-23 | 2026-02-24 | Engineer; Draftman | 03 | 06 |
| HAL-E-SA-R-900 |  | GENERAL LANDSCAPE LAYOUT | 2d | 2026-01-21 A | 2026-01-22 A | HAL-E-SS-R-900 | 100% | 2026-03-11 | 2026-03-14 | Engineer; Draftman | 03 | 06 |
| HAL-E-SA-R-910 |  | GENERAL HARDSCAPE LAYOUT | 4d | 2026-01-21 A | 2026-01-22 A | HAL-E-SS-R-910 | 100% | 2026-03-16 | 2026-03-22 | Engineer; Draftman | 03 | 06 |
| HAL-E-SA-R-930 |  | PUMP ROOM DETAILS | 2d | 2026-01-22 A | 2026-02-28 A | HAL-E-SS-R-930 | 100% | 2026-02-24 | 2026-02-28 | Engineer; Draftman | 03 | 06 |
| HAL-E-SA-R-820 |  | SWEPT PATH LAYOUT PLAN | 2d | 2026-02-04 A | 2026-02-07 A | HAL-E-SS-R-820 | 100% | 2026-02-17 | 2026-02-19 | Engineer; Draftman | 03 | 06 |
| HAL-E-SA-R-940 |  | GENERAL DETAILS | 2d | 2026-02-04 A | 2026-02-08 A | HAL-E-SS-R-940 | 100% | 2026-02-28 | 2026-03-02 | Engineer; Draftman | 03 | 06 |
| HAL-E-SA-R-950 |  | LANDSCAPE DETAILS | 2d | 2026-02-04 A | 2026-02-12 A | HAL-E-SS-R-950 | 100% | 2026-03-02 | 2026-03-04 | Engineer; Draftman | 03 | 06 |
| HAL-E-SA-R-960 |  | LANDSCAPE SCHEDULES | 2d | 2026-02-04 A | 2026-02-12 A | HAL-E-SS-R-960 | 100% | 2026-03-04 | 2026-03-07 |  | 03 | 06 |

| ID | WBS | Activity | Duration | Start | Finish | Predecessors | Complete | Planned start | Planned finish | Resources | Phasing Code Category | Discipline |
| --- | --- | --- | --- | --- | --- | --- | --- | --- | --- | --- | --- | --- |
|  | 6 | **EXTERNAL** |  | 2026-01-17 | 2026-03-29 |  |  |  |  |  |  |  |
| HAL-E-SA-EX-1000 |  | WASHOUT CHAMBER DETAILS | 2d | 2026-01-17 A | 2026-01-17 A | HAL-E-SA-EX-990 | 100% | 2026-04-02 | 2026-04-05 |  | 03 | 06 |
| HAL-E-SA-EX-1010 |  | AIR RELEASE VALVE CHAMBER DETAILS | 2d | 2026-01-17 A | 2026-01-17 A | HAL-E-SA-EX-1000 | 100% | 2026-04-05 | 2026-04-07 |  | 03 | 06 |
| HAL-E-SA-EX-1020 |  | THRUST BLOCK DETAILS (SHEET 1 OF 4) | 2d | 2026-01-17 A | 2026-01-17 A | HAL-E-SA-EX-1010 | 100% | 2026-04-07 | 2026-04-09 |  | 03 | 06 |
| HAL-E-SA-EX-1030 |  | THRUST BLOCK DETAILS (SHEET 2 OF 4) | 2d | 2026-01-17 A | 2026-01-17 A | HAL-E-SA-EX-1020 | 100% | 2026-04-09 | 2026-04-12 |  | 03 | 06 |
| HAL-E-SA-EX-1040 |  | THRUST BLOCK DETAILS (SHEET 3 OF 4) | 2d | 2026-01-17 A | 2026-01-17 A | HAL-E-SA-EX-1030 | 100% | 2026-04-12 | 2026-04-14 |  | 03 | 06 |
| HAL-E-SA-EX-1050 |  | THRUST BLOCK DETAILS (SHEET 4 OF 4) | 2d | 2026-01-17 A | 2026-01-17 A | HAL-E-SA-EX-1040, HAL-E-SS-EX-1050 | 100% | 2026-04-14 | 2026-04-16 |  | 03 | 06 |
| HAL-E-SA-EX-760 |  | DOUBLE VALVE CHAMBER DETAILS | 2d | 2026-01-17 A | 2026-01-17 A | HAL-E-SS-EX-760 | 100% | 2026-03-09 | 2026-03-11 | Engineer; Draftman | 03 | 06 |
| HAL-E-SA-EX-800 |  | FLOW METER REINFORCEMENT DETAILS | 4d | 2026-01-17 A | 2026-01-17 A | HAL-E-SS-EX-800 | 100% | 2026-03-16 | 2026-03-22 | Engineer; Draftman | 03 | 06 |
| HAL-E-SA-EX-810 |  | THRUST BLOCK DETAILS (SHEET 1 OF 4) | 4d | 2026-01-17 A | 2026-01-17 A | HAL-E-SS-EX-810 | 100% | 2026-03-16 | 2026-03-22 | Engineer; Draftman | 03 | 06 |
| HAL-E-SA-EX-820 |  | THRUST BLOCK DETAILS (SHEET 2 OF 4) | 2d | 2026-01-17 A | 2026-01-17 A | HAL-E-SA-EX-810, HAL-E-SS-EX-820 | 100% | 2026-03-22 | 2026-03-24 | Engineer; Draftman | 03 | 06 |
| HAL-E-SA-EX-830 |  | THRUST BLOCK DETAILS (SHEET 3 OF 4) | 4d | 2026-01-17 A | 2026-01-17 A | HAL-E-SS-EX-830 | 100% | 2026-03-16 | 2026-03-22 | Engineer; Draftman | 03 | 06 |
| HAL-E-SA-EX-840 |  | THRUST BLOCK DETAILS (SHEET 4 OF 4) | 4d | 2026-01-17 A | 2026-01-17 A | HAL-E-SS-EX-840 | 100% | 2026-03-16 | 2026-03-22 | Engineer; Draftman | 03 | 06 |
| HAL-E-SA-EX-870 |  | GENERAL NOTES | 2d | 2026-01-17 A | 2026-01-17 A | HAL-E-SS-EX-870 | 100% | 2026-03-24 | 2026-03-26 |  | 03 | 06 |
| HAL-E-SA-EX-880 |  | PIPE TRENCHES DETAILS (1) | 2d | 2026-01-17 A | 2026-01-17 A | HAL-E-SS-EX-880 | 100% | 2026-03-24 | 2026-03-26 |  | 03 | 06 |
| HAL-E-SA-EX-890 |  | PIPE TRENCHES DETAILS (2) | 2d | 2026-01-17 A | 2026-01-17 A | HAL-E-SS-EX-890 | 100% | 2026-03-24 | 2026-03-26 |  | 03 | 06 |
| HAL-E-SA-EX-910 |  | CAST IN PLACE MANHOLE DETAILS FOR DEPTH < 6000MM (TYPE-B) | 2d | 2026-01-17 A | 2026-01-17 A | HAL-E-SS-EX-910 | 100% | 2026-03-24 | 2026-03-26 |  | 03 | 06 |
| HAL-E-SA-EX-920 |  | BACKDROP DETAIL OF PRECAST MANHOLE DEPTH FROM 3000MM TO 6000MM | 2d | 2026-01-17 A | 2026-01-17 A | HAL-E-SS-EX-920 | 100% | 2026-03-26 | 2026-03-29 |  | 03 | 06 |
| HAL-E-SA-EX-940 |  | PRECAST MANHOLE DETAILS | 2d | 2026-01-17 A | 2026-01-17 A | HAL-E-SS-EX-940 | 100% | 2026-03-24 | 2026-03-26 |  | 03 | 06 |
| HAL-E-SA-EX-960 |  | PIPE TRENCH DETAILS | 2d | 2026-01-17 A | 2026-01-17 A | HAL-E-SS-EX-960, HAL-E-SA-EX-940, HAL-E-SA-EX-930, HAL-E-SA-EX-920, HAL-E-SA-EX-910, HAL-E-SA-EX-900 | 100% | 2026-03-29 | 2026-03-31 |  | 03 | 06 |
| HAL-E-SA-EX-970 |  | BURIED GATE VALVE DETAILS | 2d | 2026-01-17 A | 2026-01-17 A | HAL-E-SS-EX-970 | 100% | 2026-03-26 | 2026-03-29 |  | 03 | 06 |
| HAL-E-SA-EX-990 |  | DOUBLE VALVE CHAMBER DETAILS | 2d | 2026-01-17 A | 2026-01-17 A | HAL-E-SA-EX-980, HAL-E-SA-EX-950, HAL-E-SA-EX-960 | 100% | 2026-03-31 | 2026-04-02 |  | 03 | 06 |
| HAL-E-SA-EX-730 |  | PIPE TRENCH DETAILS | 1.5d | 2026-01-20 A | 2026-01-20 A | HAL-E-SS-EX-730 | 100% | 2026-02-12 | 2026-02-15 | Engineer; Draftman | 03 | 06 |
| HAL-E-SA-EX-740 |  | BURIED GATE VALVE DETAILS | 1.5d | 2026-01-20 A | 2026-01-20 A | HAL-E-SS-EX-740 | 100% | 2026-02-12 | 2026-02-15 | Engineer; Draftman | 03 | 06 |
| HAL-E-SA-EX-750 |  | SINGLE VALVE CHAMBER DETAILS | 1.5d | 2026-01-21 A | 2026-01-21 A | HAL-E-SS-EX-750 | 100% | 2026-02-12 | 2026-02-15 | Engineer; Draftman | 03 | 06 |
| HAL-E-SA-EX-770 |  | WASHOUT CHAMBER DETAILS | 2d | 2026-01-21 A | 2026-01-28 A | HAL-E-SS-EX-770 | 100% | 2026-03-02 | 2026-03-04 | Engineer; Draftman | 03 | 06 |
| HAL-E-SA-EX-780 |  | AIR RELEASE VALVE CHAMBER DETAILS | 2d | 2026-01-21 A | 2026-01-28 A | HAL-E-SS-EX-780 | 100% | 2026-03-02 | 2026-03-04 | Engineer; Draftman | 03 | 06 |
| HAL-E-SA-EX-900 |  | CAST IN PLACE MANHOLE DETAILS FOR DEPTH < 6000MM (TYPE-A) | 2d | 2026-01-21 A | 2026-01-28 A | HAL-E-SS-EX-900 | 100% | 2026-03-11 | 2026-03-14 |  | 03 | 06 |
| HAL-E-SA-EX-930 |  | BACKDROP DETAIL OF PRECAST MANHOLE DEPTH < 3000MM | 2d | 2026-01-21 A | 2026-01-28 A | HAL-E-SS-EX-930 | 100% | 2026-03-09 | 2026-03-11 |  | 03 | 06 |
| HAL-E-SA-EX-980 |  | SINGLE VALVE CHAMBER DETAILS | 2d | 2026-01-21 A | 2026-01-21 A | HAL-E-SA-EX-970 | 100% | 2026-02-19 | 2026-02-23 |  | 03 | 06 |
| HAL-E-SA-EX-690 |  | POTABLE WATER NETWORK | 2d | 2026-01-28 A | 2026-02-05 A | HAL-E-SS-EX-690 | 100% | 2026-02-09 | 2026-02-10 | Engineer; Draftman | 03 | 06 |
| HAL-E-SA-EX-700 |  | FIRE FIGHTING WATER NETWORK | 2d | 2026-01-28 A | 2026-02-05 A | HAL-E-SS-EX-700 | 100% | 2026-02-09 | 2026-02-10 | Engineer; Draftman | 03 | 06 |
| HAL-E-SA-EX-710 |  | POTABLE WATER NETWORK PROFILES | 1.62d | 2026-01-28 A | 2026-02-05 A | HAL-E-SS-EX-710 | 100% | 2026-02-25 | 2026-02-28 | Engineer; Draftman | 03 | 06 |
| HAL-E-SA-EX-720 |  | FIRE FIGHTING NETWORK PROFILE | 1.5d | 2026-01-28 A | 2026-02-05 A | HAL-E-SS-EX-720 | 100% | 2026-02-28 | 2026-03-02 | Engineer; Draftman | 03 | 06 |
| HAL-E-SA-EX-790 |  | FLOW METER DETAILS | 2d | 2026-01-28 A | 2026-02-05 A | HAL-E-SS-EX-790 | 100% | 2026-03-02 | 2026-03-04 | Engineer; Draftman | 03 | 06 |
| HAL-E-SA-EX-850 |  | SEWAGE NETWORK | 2d | 2026-01-28 A | 2026-02-05 A | HAL-E-SS-EX-850 | 100% | 2026-03-04 | 2026-03-07 | Engineer; Draftman | 03 | 06 |
| HAL-E-SA-EX-860 |  | SEWAGE NETWORK PROFILES | 2d | 2026-01-28 A | 2026-02-05 A | HAL-E-SS-EX-860 | 100% | 2026-03-07 | 2026-03-09 |  | 03 | 06 |
| HAL-E-SA-EX-950 |  | IRRIGATION NETWORK LAYOUT SHEET 1 OF 1 | 2d | 2026-01-28 A | 2026-03-29 A | HAL-E-SS-EX-950 | 100% | 2026-03-11 | 2026-03-14 |  | 03 | 06 |

| ID | WBS | Activity | Duration | Start | Finish | Predecessors | Complete | Planned start | Planned finish | Resources | Phasing Code Category | Discipline |
| --- | --- | --- | --- | --- | --- | --- | --- | --- | --- | --- | --- | --- |
|  | 4 | **PRE QUALIFACTION FOR MATERIALS** |  | 2025-12-08 | 2026-03-29 |  |  |  |  |  |  |  |
|  | 1 | **PREPARATION AND SUBMITTAL** |  | 2025-12-16 | 2026-03-15 |  |  |  |  |  |  |  |
|  | 6 | **STRUCTURAL** |  | 2025-12-16 | 2026-01-03 |  |  |  |  |  |  |  |
| HAL-E-PS-C-0020 |  | Concrete mix | 2d | 2025-12-16 A | 2025-12-16 A | HAL-E-PS-C-0010 | 100% | 2026-01-07 | 2026-01-08 | Purchaser [32 h] | 03 | 01 |
| HAL-E-PS-C-0030 |  | Polyethylene sheet | 2d | 2025-12-29 A | 2025-12-29 A | HAL-E-PS-C-0020 | 100% | 2026-01-10 | 2026-01-11 | Purchaser [32 h] | 03 | 01 |
| HAL-E-PS-C-0040 |  | Bitumen paint | 2d | 2025-12-29 A | 2025-12-29 A | HAL-E-PS-C-0030 | 100% | 2026-01-12 | 2026-01-13 | Purchaser [32 h] | 03 | 01 |
| HAL-E-PS-C-0050 |  | Rebar | 2d | 2025-12-29 A | 2025-12-29 A | HAL-E-PS-C-0040 | 100% | 2026-01-14 | 2026-01-15 | Purchaser [32 h] | 03 | 01 |
| HAL-E-PS-C-0010 |  | Anti termite | 2d | 2026-01-03 A | 2026-01-03 A | HAL-MOB-SO.0016 | 100% | 2026-01-12 | 2026-01-13 | Purchaser [32 h] | 03 | 01 |
|  | 1 | **ARCHITECTURAL** |  | 2025-12-18 | 2026-03-15 |  |  |  |  |  |  |  |
| HAL-E-PS-A-0020 |  | PES -Steel Structure | 2d | 2025-12-18 A | 2025-12-18 A | HAL-E-PS-C-0010, HAL-E-PS-C-0050 | 100% | 2026-01-17 | 2026-01-18 | Purchaser [32 h] | 03 | 02 |
| HAL-E-PS-A-0050 |  | Steel ladder | 2d | 2025-12-18 A | 2025-12-18 A | HAL-E-PS-A-0040 | 100% | 2026-01-26 | 2026-01-27 | Purchaser [32 h] | 03 | 02 |
| HAL-E-PS-A-0120 |  | Doors | 2d | 2026-01-03 A | 2026-01-03 A | HAL-E-PS-A-0070 | 100% | 2026-01-24 | 2026-01-25 | Purchaser [32 h] | 03 | 02 |
| HAL-E-PS-A-0180 |  | Internl paint | 2d | 2026-01-08 A | 2026-01-08 A | HAL-E-PS-A-0170 | 100% | 2026-02-07 | 2026-02-08 | Purchaser [32 h] | 03 | 02 |
| HAL-E-PS-A-0060 |  | Steel gratings | 2d | 2026-02-05 A | 2026-02-05 A | HAL-E-PS-A-0050 | 100% | 2026-02-17 | 2026-02-19 | Purchaser [32 h] | 03 | 02 |
| HAL-E-PS-A-0070 |  | Steel rails | 2d | 2026-02-05 A | 2026-02-05 A | HAL-E-PS-A-0060 | 100% | 2026-02-19 | 2026-02-23 | Purchaser [32 h] | 03 | 02 |
| HAL-E-PS-A-0190 |  | Gypsum board | 2d | 2026-02-05 A | 2026-02-05 A | HAL-E-PS-A-0180 | 100% | 2026-03-05 | 2026-03-07 | Purchaser [32 h] | 03 | 02 |
| HAL-E-PS-A-0130 |  | Windows | 2d | 2026-02-09 A | 2026-02-09 A | HAL-E-PS-A-0120 | 100% | 2026-02-23 | 2026-02-25 | Purchaser [32 h] | 03 | 02 |
| HAL-E-PS-A-0200 |  | Aluminum Composite Panel | 1.12d | 2026-02-09 A | 2026-02-09 A | HAL-E-PS-A-0190 | 100% | 2026-03-18 | 2026-03-21 | Purchaser [32 h] | 03 | 02 |
| HAL-E-PS-A-0140 |  | Ceramic tiles | 2d | 2026-02-26 A | 2026-02-26 A | HAL-E-PS-A-0130 | 100% | 2026-03-11 | 2026-03-12 | Purchaser [32 h] | 03 | 02 |
| HAL-E-PS-A-0150 |  | Granite strip | 2d | 2026-02-26 A | 2026-02-26 A | HAL-E-PS-A-0140 | 100% | 2026-03-14 | 2026-03-15 | Purchaser [32 h] | 03 | 02 |
| HAL-E-PS-A-0040 |  | Concrete masonry unit (CMU) | 2d | 2026-03-15 A | 2026-03-15 A | HAL-E-PS-C-0020 | 100% | 2026-03-30 | 2026-03-31 | Purchaser [32 h] | 03 | 02 |
| HAL-E-PS-A-0170 |  | Epoxy paint | 2d | 2026-03-15 A | 2026-03-15 A | HAL-E-PS-A-0150 | 100% | 2026-04-01 | 2026-04-02 | Purchaser [32 h] | 03 | 02 |
| HAL-E-PS-A-0230 |  | Steel fence and gates | 2d | 2026-03-15 A | 2026-03-15 A | HAL-E-PS-A-0200 | 100% | 2026-04-04 | 2026-04-05 | Purchaser [32 h] | 03 | 02 |
| HAL-E-PS-A-0240 |  | Identification sign; ID01 & ID02 | 2d | 2026-03-15 A | 2026-03-15 A | HAL-E-PS-A-0230 | 100% | 2026-04-06 | 2026-04-07 | Purchaser [32 h] | 03 | 02 |

| ID | WBS | Activity | Duration | Start | Finish | Predecessors | Complete | Planned start | Planned finish | Resources | Phasing Code Category | Discipline |
| --- | --- | --- | --- | --- | --- | --- | --- | --- | --- | --- | --- | --- |
|  | 2 | **MECHANICAL** |  | 2025-12-24 | 2026-01-29 |  |  |  |  |  |  |  |
| HAL-E-PS-M-0030 |  | PPR pipes | 2d | 2025-12-24 A | 2025-12-24 A | HAL-E-PS-M-0010 | 100% | 2026-01-12 | 2026-01-13 | Purchaser [32 h] | 03 | 03 |
| HAL-E-PS-M-0150 |  | Capped connection | 2d | 2025-12-24 A | 2025-12-24 A | HAL-E-PS-M-0140 | 100% | 2026-02-07 | 2026-02-08 | Purchaser [32 h] | 03 | 03 |
| HAL-E-PS-M-0160 |  | UPVC pipes | 2d | 2025-12-24 A | 2025-12-24 A | HAL-E-PS-M-0150 | 100% | 2026-02-02 | 2026-02-03 | Purchaser [32 h] | 03 | 03 |
| HAL-E-PS-M-0210 |  | Western water closet | 2d | 2025-12-24 A | 2025-12-24 A | HAL-E-PS-M-0200 | 100% | 2026-02-14 | 2026-02-15 | Purchaser [32 h] | 03 | 03 |
| HAL-E-PS-M-0240 |  | Lavatory / wash basin | 1.12d | 2025-12-24 A | 2025-12-24 A | HAL-E-PS-M-0230 | 100% | 2026-02-21 | 2026-02-23 | Purchaser [32 h] | 03 | 03 |
| HAL-E-PS-M-0270 |  | Fire pumps | 2d | 2025-12-27 A | 2025-12-27 A | HAL-E-PS-M-0260 | 100% | 2026-03-01 | 2026-03-03 | Purchaser [32 h] | 03 | 03 |
| HAL-E-PS-M-0320 |  | Booster pump | 2d | 2025-12-27 A | 2025-12-27 A | HAL-E-PS-M-0280 | 100% | 2026-03-05 | 2026-03-08 | Purchaser [32 h] | 03 | 03 |
| HAL-E-PS-M-0070 |  | U/G HDPE pipes | 2d | 2025-12-28 A | 2025-12-28 A | HAL-E-PS-M-0060 | 100% | 2026-01-26 | 2026-01-27 | Purchaser [32 h] | 03 | 03 |
| HAL-E-PS-M-0330 |  | GRP tank | 2d | 2025-12-28 A | 2025-12-28 A | HAL-E-PS-M-0320 | 100% | 2026-03-08 | 2026-03-10 | Purchaser [32 h] | 03 | 03 |
| HAL-E-PS-M-0190 |  | Gully trap | 2d | 2025-12-30 A | 2025-12-30 A | HAL-E-PS-M-0180 | 100% | 2026-02-09 | 2026-02-10 | Purchaser [32 h] | 03 | 03 |
| HAL-E-PS-M-0080 |  | Warning tapes | 2d | 2026-01-01 A | 2026-01-01 A | HAL-E-PS-M-0060 | 100% | 2026-01-21 | 2026-01-22 | Purchaser [32 h] | 03 | 03 |
| HAL-E-PS-M-0200 |  | Electric water heater | 2d | 2026-01-03 A | 2026-01-03 A | HAL-E-PS-M-0190 | 100% | 2026-02-14 | 2026-02-15 | Purchaser [32 h] | 03 | 03 |
| HAL-E-PS-M-0140 |  | Ball valve | 2d | 2026-01-05 A | 2026-01-05 A | HAL-E-PS-M-0120 | 100% | 2026-02-04 | 2026-02-05 | Purchaser [32 h] | 03 | 03 |
| HAL-E-PS-M-0340 |  | Water supply valves | 2d | 2026-01-07 A | 2026-01-07 A | HAL-E-PS-M-0330 | 100% | 2026-03-01 | 2026-03-03 | Purchaser [32 h] | 03 | 03 |
| HAL-E-PS-M-0010 |  | Seamless black steel or ERW pipes | 2d | 2026-01-08 A | 2026-01-08 A | HAL-E-PS-C-0020 | 100% | 2026-01-19 | 2026-01-20 | Purchaser [32 h] | 03 | 03 |
| HAL-E-PS-M-0230 |  | Toilet Fittings | 2d | 2026-01-08 A | 2026-01-08 A | HAL-E-PS-M-0220 | 100% | 2026-02-18 | 2026-02-21 | Purchaser [32 h] | 03 | 03 |
| HAL-E-PS-M-0220 |  | Bib tap | 2d | 2026-01-11 A | 2026-01-11 A | HAL-E-PS-M-0210 | 100% | 2026-02-16 | 2026-02-17 | Purchaser [32 h] | 03 | 03 |
| HAL-E-PS-M-0350 |  | Water tap | 2d | 2026-01-11 A | 2026-01-11 A | HAL-E-PS-M-0340 | 100% | 2026-02-16 | 2026-02-17 | Purchaser [32 h] | 03 | 03 |
| HAL-E-PS-M-0170 |  | Roof vent caps | 2d | 2026-01-12 A | 2026-01-12 A | HAL-E-PS-M-0160 | 100% | 2026-02-09 | 2026-02-10 | Purchaser [32 h] | 03 | 03 |
| HAL-E-PS-M-0180 |  | Floor drain | 2d | 2026-01-12 A | 2026-01-12 A | HAL-E-PS-M-0170 | 100% | 2026-02-11 | 2026-02-12 | Purchaser [32 h] | 03 | 03 |
| HAL-E-PS-M-0090 |  | Fire hose cabinet | 2d | 2026-01-14 A | 2026-01-14 A | HAL-E-PS-M-0070 | 100% | 2026-01-28 | 2026-01-29 | Purchaser [32 h] | 03 | 03 |
| HAL-E-PS-M-0100 |  | Automatic air release valve | 2d | 2026-01-19 A | 2026-01-19 A | HAL-E-PS-M-0090 | 100% | 2026-01-31 | 2026-02-01 | Purchaser [32 h] | 03 | 03 |
| HAL-E-PS-M-0110 |  | OS & Y gate valve | 2d | 2026-01-19 A | 2026-01-19 A | HAL-E-PS-M-0100 | 100% | 2026-02-02 | 2026-02-03 | Purchaser [32 h] | 03 | 03 |
| HAL-E-PS-M-0120 |  | Fire alarm check valve | 2d | 2026-01-19 A | 2026-01-19 A | HAL-E-PS-M-0110 | 100% | 2026-02-04 | 2026-02-05 | Purchaser [32 h] | 03 | 03 |
| HAL-E-PS-M-0280 |  | Fire fighting valves | 2d | 2026-01-19 A | 2026-01-19 A | HAL-E-PS-M-0270 | 100% | 2026-02-14 | 2026-02-15 | Purchaser [32 h] | 03 | 03 |
| HAL-E-PS-M-0060 |  | Exhaust diffuser | 2d | 2026-01-27 A | 2026-01-27 A | HAL-E-PS-M-0050 | 100% | 2026-02-07 | 2026-02-08 | Purchaser [32 h] | 03 | 03 |
| HAL-E-PS-M-0040 |  | HVAC duct | 2d | 2026-01-28 A | 2026-01-28 A | HAL-E-PS-M-0030 | 100% | 2026-02-02 | 2026-02-03 | Purchaser [32 h] | 03 | 03 |
| HAL-E-PS-M-0050 |  | Flexible duct | 2d | 2026-01-28 A | 2026-01-28 A | HAL-E-PS-M-0040 | 100% | 2026-02-04 | 2026-02-05 | Purchaser [32 h] | 03 | 03 |
| HAL-E-PS-M-0250 |  | Inline exhaust fans | 2d | 2026-01-29 A | 2026-01-29 A | HAL-E-PS-M-0240 | 100% | 2026-02-09 | 2026-02-10 | Purchaser [32 h] | 03 | 03 |
| HAL-E-PS-M-0260 |  | Wall propeller type exhaust fans | 2d | 2026-01-29 A | 2026-01-29 A | HAL-E-PS-M-0250 | 100% | 2026-02-11 | 2026-02-12 | Purchaser [32 h] | 03 | 03 |

| ID | WBS | Activity | Duration | Start | Finish | Predecessors | Complete | Planned start | Planned finish | Resources | Phasing Code Category | Discipline |
| --- | --- | --- | --- | --- | --- | --- | --- | --- | --- | --- | --- | --- |
|  | 3 | **ELECTRICAL** |  | 2025-12-21 | 2026-03-15 |  |  |  |  |  |  |  |
| HAL-E-PS-E-0010 |  | PVC conduits | 2d | 2025-12-21 A | 2025-12-21 A | HAL-E-PS-M-0010 | 100% | 2026-01-10 | 2026-01-11 | Purchaser [32 h] | 03 | 04 |
| HAL-E-PS-E-0070 |  | Low Voltage cables | 2d | 2025-12-24 A | 2025-12-24 A | HAL-E-PS-E-0060 | 100% | 2026-01-24 | 2026-01-25 | Purchaser [32 h] | 03 | 04 |
| HAL-E-PS-E-0020 |  | Wires | 2d | 2026-01-01 A | 2026-01-01 A | HAL-E-PS-E-0010 | 100% | 2026-01-17 | 2026-01-18 | Purchaser [32 h] | 03 | 04 |
| HAL-E-PS-E-0030 |  | Cable Tray | 2d | 2026-01-03 A | 2026-01-03 A | HAL-E-PS-E-0020 | 100% | 2026-01-19 | 2026-01-20 | Purchaser [32 h] | 03 | 04 |
| HAL-E-PS-E-0050 |  | Wiring devices | 2d | 2026-01-03 A | 2026-01-03 A | HAL-E-PS-E-0040 | 100% | 2026-01-24 | 2026-01-25 | Purchaser [32 h] | 03 | 04 |
| HAL-E-PS-E-0060 |  | HDPE ducts | 2d | 2026-01-03 A | 2026-01-03 A | HAL-E-PS-E-0050 | 100% | 2026-01-26 | 2026-01-27 | Purchaser [32 h] | 03 | 04 |
| HAL-E-PS-E-0250 |  | Solar system | 2d | 2026-01-03 A | 2026-01-03 A | HAL-E-PS-E-0240 | 100% | 2026-03-22 | 2026-03-24 | Purchaser [32 h] | 03 | 04 |
| HAL-E-PS-E-0120 |  | Suspended High Bay LED lights | 2d | 2026-01-11 A | 2026-01-11 A | HAL-E-PS-E-0110 | 100% | 2026-02-03 | 2026-02-04 | Purchaser [32 h] | 03 | 04 |
| HAL-E-PS-E-0130 |  | Flood lights | 2d | 2026-01-11 A | 2026-01-11 A | HAL-E-PS-E-0120 | 100% | 2026-02-05 | 2026-02-07 | Purchaser [32 h] | 03 | 04 |
| HAL-E-PS-E-0140 |  | Recessed mounted LED downlight | 2d | 2026-01-11 A | 2026-01-11 A | HAL-E-PS-E-0130 | 100% | 2026-02-08 | 2026-02-09 | Purchaser [32 h] | 03 | 04 |
| HAL-E-PS-E-0150 |  | LED Emergency Lights wall mounted | 2d | 2026-01-11 A | 2026-01-11 A | HAL-E-PS-E-0140 | 100% | 2026-02-10 | 2026-02-11 | Purchaser [32 h] | 03 | 04 |
| HAL-E-PS-E-0160 |  | LED Emergency Exit Light | 2d | 2026-01-11 A | 2026-01-11 A | HAL-E-PS-E-0150, HAL-E-SS-R-900 | 100% | 2026-03-07 | 2026-03-09 | Purchaser [32 h] | 03 | 04 |
| HAL-E-PS-E-0200 |  | Street Lighting poles | 4d | 2026-01-11 A | 2026-01-11 A | HAL-E-PS-E-0180, HAL-E-SS-C-890 | 100% | 2026-03-16 | 2026-03-22 | Purchaser [32 h] | 03 | 04 |
| HAL-E-PS-E-0220 |  | Surface mounted lights | 2d | 2026-01-11 A | 2026-01-11 A | HAL-E-PS-E-0210 | 100% | 2026-03-22 | 2026-03-24 | Purchaser [32 h] | 03 | 04 |
| HAL-E-PS-E-0180 |  | Fire alarm system | 2d | 2026-01-19 A | 2026-01-20 A | HAL-E-PS-E-0170, HAL-E-PS-M-0210 | 100% | 2026-03-14 | 2026-03-16 | Purchaser [32 h] | 03 | 04 |
| HAL-E-PS-E-0040 |  | Grounding system | 2d | 2026-01-24 A | 2026-01-24 A | HAL-E-PS-E-0030 | 100% | 2026-02-02 | 2026-02-03 | Purchaser [32 h] | 03 | 04 |
| HAL-E-PS-E-0170 |  | Wall mounted, duplex, telephone and data outlet | 2d | 2026-01-24 A | 2026-01-24 A | HAL-E-PS-E-0160 | 100% | 2026-03-11 | 2026-03-14 | Purchaser [32 h] | 03 | 04 |
| HAL-E-PS-E-0230 |  | CCTV System | 2d | 2026-01-24 A | 2026-01-24 A | HAL-E-PS-E-0220, HAL-E-SS-M-680, HAL-E-SS-EX-780 | 100% | 2026-03-24 | 2026-03-26 | Purchaser [32 h] | 03 | 04 |
| HAL-E-PS-E-0240 |  | Access control system | 1.62d | 2026-02-02 A | 2026-02-02 A | HAL-E-PS-E-0230, HAL-E-SS-R-960 | 100% | 2026-02-19 | 2026-02-21 | Purchaser [32 h] | 03 | 04 |
| HAL-E-PS-E-0260 |  | Main program system & controller | 2d | 2026-02-04 A | 2026-02-04 A | HAL-E-PS-E-0250 | 100% | 2026-02-04 | 2026-02-05 | Purchaser [32 h] | 03 | 04 |
| HAL-E-PS-E-0270 |  | PLC controller | 2d | 2026-02-04 A | 2026-02-04 A | HAL-E-PS-E-0260 | 100% | 2026-03-07 | 2026-03-08 | Purchaser [32 h] | 03 | 04 |
| HAL-E-PS-E-0080 |  | Main distribution board (MDB) | 2d | 2026-02-12 A | 2026-02-14 A | HAL-E-PS-E-0070 | 100% | 2026-02-23 | 2026-02-25 | Purchaser [32 h] | 03 | 04 |
| HAL-E-PS-E-0090 |  | Lighting panel board | 5d | 2026-02-12 A | 2026-02-14 A | HAL-E-PS-E-0080 | 100% | 2026-02-25 | 2026-03-03 | Purchaser [32 h] | 03 | 04 |
| HAL-E-PS-E-0100 |  | PP-AC panel | 2d | 2026-02-12 A | 2026-02-14 A | HAL-E-PS-E-0090 | 100% | 2026-03-03 | 2026-03-05 | Purchaser [32 h] | 03 | 04 |
| HAL-E-PS-E-0210 |  | Distribution board for pump room | 2d | 2026-02-12 A | 2026-02-14 A | HAL-E-PS-E-0200 | 100% | 2026-03-08 | 2026-03-10 | Purchaser [32 h] | 03 | 04 |
| HAL-E-PS-E-0110 |  | Disconnect switches | 2d | 2026-03-15 A | 2026-03-15 A | HAL-E-PS-E-0100 | 100% | 2026-03-30 | 2026-03-31 | Purchaser [32 h] | 03 | 04 |

| ID | WBS | Activity | Duration | Start | Finish | Predecessors | Complete | Planned start | Planned finish | Resources | Phasing Code Category | Discipline |
| --- | --- | --- | --- | --- | --- | --- | --- | --- | --- | --- | --- | --- |
|  | 4 | **EXTERNAL** |  | 2026-03-02 | 2026-03-15 |  |  |  |  |  |  |  |
| HAL-E-PS-EX-0010 |  | Asphalt works | 2d | 2026-03-02 A | 2026-03-02 A | HAL-E-PS-E-0220 | 100% | 2026-03-11 | 2026-03-12 | Purchaser [32 h] | 03 | 06 |
| HAL-E-PS-EX-0030 |  | Road markings | 2d | 2026-03-09 A | 2026-03-09 A | HAL-E-PS-EX-0020 | 100% | 2026-03-22 | 2026-03-23 | Purchaser [32 h] | 03 | 06 |
| HAL-E-PS-EX-0040 |  | Road signs | 2d | 2026-03-09 A | 2026-03-09 A | HAL-E-PS-EX-0030 | 100% | 2026-03-24 | 2026-03-25 | Purchaser [32 h] | 03 | 06 |
| HAL-E-PS-EX-0020 |  | Concrete parking bumper | 2d | 2026-03-15 A | 2026-03-15 A | HAL-E-PS-EX-0010 | 100% | 2026-04-01 | 2026-04-02 | Purchaser [32 h] | 03 | 06 |
| HAL-E-PS-EX-0060 |  | Interlock tiles | 2d | 2026-03-15 A | 2026-03-15 A | HAL-E-PS-EX-0040 | 100% | 2026-04-04 | 2026-04-05 | Purchaser [32 h] | 03 | 06 |
| HAL-E-PS-EX-0070 |  | Curbstones | 2d | 2026-03-15 A | 2026-03-15 A | HAL-E-PS-EX-0060 | 100% | 2026-04-06 | 2026-04-07 | Purchaser [32 h] | 03 | 06 |
| HAL-E-PS-EX-0080 |  | Gravel bedding | 2d | 2026-03-15 A | 2026-03-15 A | HAL-E-PS-EX-0070 | 100% | 2026-04-08 | 2026-04-09 | Purchaser [32 h] | 03 | 06 |
|  | 5 | **ENVIRONMETAL** |  | 2025-12-24 | 2025-12-28 |  |  |  |  |  |  |  |
| HAL-E-PS-EN-0020 |  | Directly buried gate valve for fire system | 2d | 2025-12-24 A | 2025-12-24 A | HAL-E-PS-EN-0010 | 100% | 2026-02-02 | 2026-02-03 | Purchaser [32 h] | 03 | 06 |
| HAL-E-PS-EN-0040 |  | Directly buried gate valve for water system | 2d | 2025-12-24 A | 2025-12-24 A | HAL-E-PS-EN-0030 | 100% | 2026-02-04 | 2026-02-05 | Purchaser [32 h] | 03 | 06 |
| HAL-E-PS-EN-0050 |  | Air valve | 2d | 2025-12-24 A | 2025-12-24 A | HAL-E-PS-EN-0040 | 100% | 2026-02-07 | 2026-02-08 | Purchaser [32 h] | 03 | 06 |
| HAL-E-PS-EN-0060 |  | Washout valve | 2d | 2025-12-24 A | 2025-12-24 A | HAL-E-PS-EN-0050 | 100% | 2026-02-09 | 2026-02-10 | Purchaser [32 h] | 03 | 06 |
| HAL-E-PS-EN-0070 |  | Gate valve | 2d | 2025-12-24 A | 2025-12-24 A | HAL-E-PS-EN-0060 | 100% | 2026-02-11 | 2026-02-12 | Purchaser [32 h] | 03 | 06 |
| HAL-E-PS-EN-0080 |  | GRP pipes | 2d | 2025-12-24 A | 2025-12-24 A | HAL-E-PS-EN-0070 | 100% | 2026-02-14 | 2026-02-15 | Purchaser [32 h] | 03 | 06 |
| HAL-E-PS-EN-0010 |  | HDPE pipes for fire system | 2d | 2025-12-28 A | 2025-12-28 A | HAL-E-PS-M-0010 | 100% | 2026-01-10 | 2026-01-11 | Purchaser [32 h] | 03 | 06 |
| HAL-E-PS-EN-0030 |  | HDPE pipes for water supply system | 2d | 2025-12-28 A | 2025-12-28 A | HAL-E-PS-EN-0020 | 100% | 2026-01-14 | 2026-01-15 | Purchaser [32 h] | 03 | 06 |
|  | 2 | **REVIEW AND APPROVAL** |  | 2025-12-08 | 2026-03-29 |  |  |  |  |  |  |  |
|  | 6 | **STRUCTURAL** |  | 2025-12-16 | 2026-01-04 |  |  |  |  |  |  |  |
| HAL-E-PA-C-0020 |  | Concrete mix | 5d | 2025-12-16 A | 2025-12-17 A | HAL-E-PS-C-0020 | 100% | 2026-01-10 | 2026-01-14 |  | 03 | 01 |
| HAL-E-PA-C-0030 |  | Polyethylene sheet | 2d | 2025-12-29 A | 2025-12-30 A | HAL-E-PS-C-0030 | 100% | 2026-01-12 | 2026-01-13 |  | 03 | 01 |
| HAL-E-PA-C-0040 |  | Bitumen paint | 2d | 2025-12-29 A | 2025-12-30 A | HAL-E-PS-C-0040 | 100% | 2026-01-14 | 2026-01-15 |  | 03 | 01 |
| HAL-E-PA-C-0050 |  | Rebar | 2d | 2025-12-29 A | 2025-12-30 A | HAL-E-PS-C-0050 | 100% | 2026-01-17 | 2026-01-18 |  | 03 | 01 |
| HAL-E-PA-C-0010 |  | Anti termite | 5d | 2026-01-03 A | 2026-01-04 A | HAL-E-PS-C-0010 | 100% | 2026-01-14 | 2026-01-19 |  | 03 | 01 |

| ID | WBS | Activity | Duration | Start | Finish | Predecessors | Complete | Planned start | Planned finish | Resources | Phasing Code Category | Discipline |
| --- | --- | --- | --- | --- | --- | --- | --- | --- | --- | --- | --- | --- |
|  | 1 | **ARCHITECTURAL** |  | 2025-12-18 | 2026-03-29 |  |  |  |  |  |  |  |
| HAL-E-PA-A-0020 |  | PES -Steel Structure | 2d | 2025-12-18 A | 2025-12-20 A | HAL-E-PS-A-0020 | 100% | 2026-01-19 | 2026-01-20 | Purchaser | 03 | 02 |
| HAL-E-PA-A-0050 |  | Steel ladder | 2d | 2025-12-18 A | 2025-12-20 A | HAL-E-PS-A-0050 | 100% | 2026-01-28 | 2026-01-29 |  | 03 | 02 |
| HAL-E-PA-A-0120 |  | Doors | 2d | 2026-01-03 A | 2026-01-04 A | HAL-E-PS-A-0120 | 100% | 2026-01-26 | 2026-01-27 |  | 03 | 02 |
| HAL-E-PA-A-0180 |  | Internl paint | 2d | 2026-01-08 A | 2026-01-10 A | HAL-E-PS-A-0180 | 100% | 2026-02-09 | 2026-02-10 |  | 03 | 02 |
| HAL-E-PA-A-0060 |  | Steel gratings | 2d | 2026-02-05 A | 2026-03-29 A | HAL-E-PS-A-0060 | 100% | 2026-02-19 | 2026-02-23 |  | 03 | 02 |
| HAL-E-PA-A-0070 |  | Steel rails | 2d | 2026-02-05 A | 2026-03-29 A | HAL-E-PS-A-0070 | 100% | 2026-02-23 | 2026-02-25 |  | 03 | 02 |
| HAL-E-PA-A-0190 |  | Gypsum board | 2d | 2026-02-05 A | 2026-02-07 A | HAL-E-PS-A-0190 | 100% | 2026-03-08 | 2026-03-09 |  | 03 | 02 |
| HAL-E-PA-A-0130 |  | Windows | 2d | 2026-02-09 A | 2026-03-21 A | HAL-E-PS-A-0130 | 100% | 2026-02-25 | 2026-02-28 |  | 03 | 02 |
| HAL-E-PA-A-0200 |  | Aluminum Composite Panel | 2.62d | 2026-02-09 A | 2026-02-21 A | HAL-E-PS-A-0200 | 100% | 2026-03-21 | 2026-03-23 | Purchaser | 03 | 02 |
| HAL-E-PA-A-0140 |  | Ceramic tiles | 2d | 2026-02-26 A | 2026-03-03 A | HAL-E-PS-A-0140 | 100% | 2026-03-14 | 2026-03-15 |  | 03 | 02 |
| HAL-E-PA-A-0150 |  | Granite strip | 2d | 2026-02-26 A | 2026-03-03 A | HAL-E-PS-A-0150 | 100% | 2026-03-16 | 2026-03-17 |  | 03 | 02 |
| HAL-E-PA-A-0040 |  | Concrete masonry unit (CMU) | 2d | 2026-03-15 A | 2026-03-29 A | HAL-E-PS-A-0040 | 100% | 2026-04-01 | 2026-04-02 |  | 03 | 02 |
| HAL-E-PA-A-0170 |  | Epoxy paint | 2d | 2026-03-15 A | 2026-03-29 A | HAL-E-PS-A-0170 | 100% | 2026-04-04 | 2026-04-05 |  | 03 | 02 |
| HAL-E-PA-A-0230 |  | Steel fence and gates | 2d | 2026-03-15 A | 2026-03-29 A | HAL-E-PS-A-0230 | 100% | 2026-04-06 | 2026-04-07 | Purchaser | 03 | 02 |
| HAL-E-PA-A-0240 |  | Identification sign; ID01 & ID02 | 2d | 2026-03-15 A | 2026-03-29 A | HAL-E-PS-A-0240 | 100% | 2026-04-08 | 2026-04-09 | Purchaser | 03 | 02 |
|  | 2 | **MECHANICAL** |  | 2025-12-08 | 2026-01-31 |  |  |  |  |  |  |  |
| HAL-E-PA-M-0010 |  | Seamless black steel or ERW pipes | 2d | 2025-12-08 A | 2026-01-10 A | HAL-E-PS-M-0010 | 100% | 2026-01-21 | 2026-01-22 |  | 03 | 03 |
| HAL-E-PA-M-0030 |  | PPR pipes | 2d | 2025-12-24 A | 2025-12-25 A | HAL-E-PS-M-0030 | 100% | 2026-01-10 | 2026-01-11 |  | 03 | 03 |
| HAL-E-PA-M-0150 |  | Capped connection | 2d | 2025-12-24 A | 2025-12-25 A | HAL-E-PS-M-0150 | 100% | 2026-02-09 | 2026-02-10 |  | 03 | 03 |
| HAL-E-PA-M-0160 |  | UPVC pipes | 2d | 2025-12-24 A | 2025-12-25 A | HAL-E-PS-M-0160 | 100% | 2026-02-04 | 2026-02-05 |  | 03 | 03 |
| HAL-E-PA-M-0210 |  | Western water closet | 2d | 2025-12-24 A | 2025-12-25 A | HAL-E-PS-M-0210 | 100% | 2026-02-16 | 2026-02-17 |  | 03 | 03 |
| HAL-E-PA-M-0240 |  | Lavatory / wash basin | 2d | 2025-12-24 A | 2025-12-25 A | HAL-E-PS-M-0240 | 100% | 2026-02-23 | 2026-02-25 |  | 03 | 03 |
| HAL-E-PA-M-0270 |  | Fire pumps | 2d | 2025-12-27 A | 2025-12-28 A | HAL-E-PS-M-0270 | 100% | 2026-03-03 | 2026-03-05 |  | 03 | 03 |
| HAL-E-PA-M-0330 |  | Booster pump | 2d | 2025-12-27 A | 2025-12-28 A | HAL-E-PS-M-0320 | 100% | 2026-03-08 | 2026-03-10 |  | 03 | 03 |
| HAL-E-PA-M-0070 |  | U/G HDPE pipes | 2d | 2025-12-28 A | 2025-12-29 A | HAL-E-PS-M-0070 | 100% | 2026-01-28 | 2026-01-29 |  | 03 | 03 |
| HAL-E-PA-M-0340 |  | GRP tank | 2d | 2025-12-28 A | 2025-12-31 A | HAL-E-PS-M-0330 | 100% | 2026-03-10 | 2026-03-12 |  | 03 | 03 |
| HAL-E-PA-M-0190 |  | Gully trap | 2d | 2025-12-30 A | 2025-12-31 A | HAL-E-PS-M-0190 | 100% | 2026-02-11 | 2026-02-12 |  | 03 | 03 |
| HAL-E-PA-M-0080 |  | Warning tapes | 2d | 2026-01-01 A | 2026-01-04 A | HAL-E-PS-M-0080 | 100% | 2026-01-24 | 2026-01-25 |  | 03 | 03 |
| HAL-E-PA-M-0200 |  | Electric water heater | 2d | 2026-01-03 A | 2026-01-04 A | HAL-E-PS-M-0200 | 100% | 2026-02-16 | 2026-02-17 |  | 03 | 03 |
| HAL-E-PA-M-0140 |  | Ball valve | 2d | 2026-01-05 A | 2026-01-06 A | HAL-E-PS-M-0140 | 100% | 2026-02-07 | 2026-02-08 |  | 03 | 03 |
| HAL-E-PA-M-0350 |  | Water supply valves | 2d | 2026-01-07 A | 2026-01-08 A | HAL-E-PS-M-0340 | 100% | 2026-03-03 | 2026-03-05 |  | 03 | 03 |
| HAL-E-PA-M-0230 |  | Toilet Fittings | 2d | 2026-01-08 A | 2026-01-10 A | HAL-E-PS-M-0230 | 100% | 2026-02-21 | 2026-02-24 |  | 03 | 03 |
| HAL-E-PA-M-0220 |  | Bib tap | 2d | 2026-01-11 A | 2026-01-12 A | HAL-E-PS-M-0220 | 100% | 2026-02-18 | 2026-02-21 |  | 03 | 03 |
| HAL-E-PA-M-0320 |  | Water tap | 2d | 2026-01-11 A | 2026-01-12 A | HAL-E-PS-M-0350 | 100% | 2026-02-18 | 2026-02-21 | Purchaser | 03 | 03 |
| HAL-E-PA-M-0170 |  | Roof vent caps | 2d | 2026-01-12 A | 2026-01-13 A | HAL-E-PS-M-0170 | 100% | 2026-02-11 | 2026-02-12 |  | 03 | 03 |
| HAL-E-PA-M-0180 |  | Floor drain | 2d | 2026-01-12 A | 2026-01-13 A | HAL-E-PS-M-0180 | 100% | 2026-02-14 | 2026-02-15 |  | 03 | 03 |
| HAL-E-PA-M-0090 |  | Fire hose cabinet | 2d | 2026-01-14 A | 2026-01-15 A | HAL-E-PS-M-0090 | 100% | 2026-01-31 | 2026-02-01 |  | 03 | 03 |
| HAL-E-PA-M-0100 |  | Automatic air release valve | 2d | 2026-01-19 A | 2026-01-19 A | HAL-E-PS-M-0100 | 100% | 2026-02-09 | 2026-02-10 |  | 03 | 03 |
| HAL-E-PA-M-0110 |  | OS & Y gate valve | 2d | 2026-01-19 A | 2026-01-19 A | HAL-E-PS-M-0110 | 100% | 2026-02-09 | 2026-02-10 |  | 03 | 03 |
| HAL-E-PA-M-0120 |  | Fire alarm check valve | 2d | 2026-01-19 A | 2026-01-19 A | HAL-E-PS-M-0120 | 100% | 2026-02-09 | 2026-02-10 |  | 03 | 03 |
| HAL-E-PA-M-0280 |  | Fire fighting valves | 2d | 2026-01-19 A | 2026-01-19 A | HAL-E-PS-M-0280 | 100% | 2026-02-16 | 2026-02-17 |  | 03 | 03 |
| HAL-E-PA-M-0060 |  | Exhaust diffuser | 2d | 2026-01-27 A | 2026-01-28 A | HAL-E-PS-M-0060 | 100% | 2026-02-09 | 2026-02-10 |  | 03 | 03 |
| HAL-E-PA-M-0040 |  | HVAC duct | 2d | 2026-01-28 A | 2026-01-29 A | HAL-E-PS-M-0040 | 100% | 2026-02-04 | 2026-02-05 |  | 03 | 03 |
| HAL-E-PA-M-0050 |  | Flexible duct | 2d | 2026-01-28 A | 2026-01-29 A | HAL-E-PS-M-0050 | 100% | 2026-02-07 | 2026-02-08 |  | 03 | 03 |
| HAL-E-PA-M-0250 |  | Inline exhaust fans | 2d | 2026-01-29 A | 2026-01-31 A | HAL-E-PS-M-0250 | 100% | 2026-02-11 | 2026-02-12 |  | 03 | 03 |
| HAL-E-PA-M-0260 |  | Wall propeller type exhaust fans | 2d | 2026-01-29 A | 2026-01-31 A | HAL-E-PS-M-0260 | 100% | 2026-02-14 | 2026-02-15 |  | 03 | 03 |

| ID | WBS | Activity | Duration | Start | Finish | Predecessors | Complete | Planned start | Planned finish | Resources | Phasing Code Category | Discipline |
| --- | --- | --- | --- | --- | --- | --- | --- | --- | --- | --- | --- | --- |
|  | 3 | **ELECTRICAL** |  | 2025-12-21 | 2026-03-29 |  |  |  |  |  |  |  |
| HAL-E-PA-E-0010 |  | PVC conduits | 2d | 2025-12-21 A | 2025-12-22 A | HAL-E-PS-E-0010 | 100% | 2026-01-12 | 2026-01-13 |  | 03 | 04 |
| HAL-E-PA-E-0070 |  | Low Voltage cables | 2d | 2025-12-24 A | 2025-12-25 A | HAL-E-PS-E-0070 | 100% | 2026-01-26 | 2026-01-27 |  | 03 | 04 |
| HAL-E-PA-E-0020 |  | Wires | 2d | 2026-01-01 A | 2026-01-03 A | HAL-E-PS-E-0020 | 100% | 2026-01-19 | 2026-01-20 |  | 03 | 04 |
| HAL-E-PA-E-0030 |  | Cable Tray | 2d | 2026-01-03 A | 2026-01-04 A | HAL-E-PS-E-0030 | 100% | 2026-01-21 | 2026-01-22 | Purchaser | 03 | 04 |
| HAL-E-PA-E-0050 |  | Wiring devices | 2d | 2026-01-03 A | 2026-01-04 A | HAL-E-PS-E-0050 | 100% | 2026-01-26 | 2026-01-27 |  | 03 | 04 |
| HAL-E-PA-E-0060 |  | HDPE ducts | 2d | 2026-01-03 A | 2026-01-04 A | HAL-E-PS-E-0060 | 100% | 2026-01-28 | 2026-01-29 |  | 03 | 04 |
| HAL-E-PA-E-0250 |  | Solar system | 2d | 2026-01-03 A | 2026-01-04 A | HAL-E-PS-E-0250 | 100% | 2026-03-24 | 2026-03-26 |  | 03 | 04 |
| HAL-E-PA-E-0120 |  | Suspended High Bay LED lights | 2d | 2026-01-11 A | 2026-01-12 A | HAL-E-PS-E-0120 | 100% | 2026-02-05 | 2026-02-07 |  | 03 | 04 |
| HAL-E-PA-E-0130 |  | Flood lights | 2d | 2026-01-11 A | 2026-01-12 A | HAL-E-PS-E-0130 | 100% | 2026-02-08 | 2026-02-09 |  | 03 | 04 |
| HAL-E-PA-E-0140 |  | Recessed mounted LED downlight | 2d | 2026-01-11 A | 2026-01-12 A | HAL-E-PS-E-0140 | 100% | 2026-02-10 | 2026-02-11 |  | 03 | 04 |
| HAL-E-PA-E-0150 |  | LED Emergency Lights wall mounted | 2d | 2026-01-11 A | 2026-01-12 A | HAL-E-PS-E-0150 | 100% | 2026-02-12 | 2026-02-14 |  | 03 | 04 |
| HAL-E-PA-E-0160 |  | LED Emergency Exit Light | 2d | 2026-01-11 A | 2026-01-12 A | HAL-E-PS-E-0160 | 100% | 2026-03-09 | 2026-03-11 |  | 03 | 04 |
| HAL-E-PA-E-0200 |  | Street Lighting poles | 2d | 2026-01-11 A | 2026-01-12 A | HAL-E-PS-E-0200 | 100% | 2026-03-22 | 2026-03-24 |  | 03 | 04 |
| HAL-E-PA-E-0220 |  | Surface mounted lights | 2d | 2026-01-11 A | 2026-01-12 A | HAL-E-PS-E-0220 | 100% | 2026-03-24 | 2026-03-26 |  | 03 | 04 |
| HAL-E-PA-E-0180 |  | Fire alarm system | 2d | 2026-01-20 A | 2026-01-20 A | HAL-E-PS-E-0180 | 100% | 2026-03-16 | 2026-03-18 |  | 03 | 04 |
| HAL-E-PA-E-0170 |  | Wall mounted, duplex, telephone and data outlet | 2d | 2026-01-24 A | 2026-03-29 A | HAL-E-PS-E-0170 | 100% | 2026-03-14 | 2026-03-16 |  | 03 | 04 |
| HAL-E-PA-E-0230 |  | CCTV System | 2d | 2026-01-24 A | 2026-02-04 A | HAL-E-PS-E-0230 | 100% | 2026-03-26 | 2026-03-29 |  | 03 | 04 |
| HAL-E-PA-E-0040 |  | Grounding system | 2d | 2026-01-24 A | 2026-01-25 A | HAL-E-PS-E-0040 | 100% |  |  |  | 03 | 04 |
| HAL-E-PA-E-0240 |  | Access control system | 2d | 2026-02-02 A | 2026-02-03 A | HAL-E-PS-E-0240 | 100% | 2026-02-23 | 2026-02-25 |  | 03 | 04 |
| HAL-E-PA-E-0260 |  | Main program system & controller | 2d | 2026-02-04 A | 2026-02-05 A | HAL-E-PS-E-0260 | 100% | 2026-03-07 | 2026-03-08 |  | 03 | 04 |
| HAL-E-PA-E-0270 |  | PLC controller | 2d | 2026-02-04 A | 2026-02-05 A | HAL-E-PS-E-0270 | 100% | 2026-03-09 | 2026-03-10 |  | 03 | 04 |
| HAL-E-PA-E-0080 |  | Main distribution board (MDB) | 2d | 2026-02-14 A | 2026-02-14 A | HAL-E-PS-E-0080 | 100% | 2026-02-25 | 2026-02-28 |  | 03 | 04 |
| HAL-E-PA-E-0090 |  | Lighting panel board | 2d | 2026-02-14 A | 2026-02-14 A | HAL-E-PS-E-0090 | 100% | 2026-03-03 | 2026-03-05 | Purchaser | 03 | 04 |
| HAL-E-PA-E-0100 |  | PP-AC panel | 2d | 2026-02-14 A | 2026-02-14 A | HAL-E-PS-E-0100 | 100% | 2026-03-05 | 2026-03-08 | Purchaser | 03 | 04 |
| HAL-E-PA-E-0210 |  | Distribution board for pump room | 2d | 2026-02-14 A | 2026-02-14 A | HAL-E-PS-E-0210 | 100% | 2026-03-10 | 2026-03-12 |  | 03 | 04 |
| HAL-E-PA-E-0110 |  | Disconnect switches | 2d | 2026-03-15 A | 2026-03-29 A | HAL-E-PS-E-0110 | 100% | 2026-04-01 | 2026-04-02 |  | 03 | 04 |

| ID | WBS | Activity | Duration | Start | Finish | Predecessors | Complete | Planned start | Planned finish | Resources | Cost | Actual cost | Phasing Code Category | Discipline |
| --- | --- | --- | --- | --- | --- | --- | --- | --- | --- | --- | --- | --- | --- | --- |
|  | 4 | **EXTERNAL** |  | 2026-03-02 | 2026-03-29 |  |  |  |  |  |  |  |  |  |
| HAL-E-PA-EX-0010 |  | Asphalt works | 2d | 2026-03-02 A | 2026-03-02 A | HAL-E-PS-EX-0010 | 100% | 2026-03-14 | 2026-03-15 |  |  |  | 03 | 06 |
| HAL-E-PA-EX-0030 |  | Road markings | 2d | 2026-03-09 A | 2026-03-10 A | HAL-E-PS-EX-0030 | 100% | 2026-03-24 | 2026-03-25 |  |  |  | 03 | 06 |
| HAL-E-PA-EX-0040 |  | Road signs | 2d | 2026-03-09 A | 2026-03-10 A | HAL-E-PS-EX-0040 | 100% | 2026-03-26 | 2026-03-28 |  |  |  | 03 | 06 |
| HAL-E-PA-EX-0020 |  | Concrete parking bumper | 2d | 2026-03-15 A | 2026-03-29 A | HAL-E-PS-EX-0020 | 100% | 2026-04-04 | 2026-04-05 |  |  |  | 03 | 06 |
| HAL-E-PA-EX-0060 |  | Interlock tiles | 2d | 2026-03-15 A | 2026-03-29 A | HAL-E-PS-EX-0060 | 100% | 2026-04-06 | 2026-04-07 |  |  |  | 03 | 06 |
| HAL-E-PA-EX-0070 |  | Curbstones | 2d | 2026-03-15 A | 2026-03-29 A | HAL-E-PS-EX-0070 | 100% | 2026-04-08 | 2026-04-09 |  |  |  | 03 | 06 |
| HAL-E-PA-EX-0080 |  | Gravel bedding | 2d | 2026-03-15 A | 2026-03-29 A | HAL-E-PS-EX-0080 | 100% | 2026-04-11 | 2026-04-12 |  |  |  | 03 | 06 |
|  | 5 | **ENVIRONMETAL** |  | 2025-12-28 | 2025-12-29 |  |  |  |  |  |  |  |  |  |
| HAL-E-PA-EN-0010 |  | HDPE pipes for fire system | 2d | 2025-12-28 A | 2025-12-29 A | HAL-E-PS-EN-0010 | 100% | 2026-01-12 | 2026-01-13 |  |  |  | 03 | 06 |
| HAL-E-PA-EN-0020 |  | Directly buried gate valve for fire system | 2d | 2025-12-28 A | 2025-12-29 A | HAL-E-PS-EN-0020 | 100% | 2026-02-04 | 2026-02-05 |  |  |  | 03 | 06 |
| HAL-E-PA-EN-0030 |  | HDPE pipes for water supply system | 2d | 2025-12-28 A | 2025-12-29 A | HAL-E-PS-EN-0030 | 100% | 2026-01-17 | 2026-01-18 |  |  |  | 03 | 06 |
| HAL-E-PA-EN-0040 |  | Directly buried gate valve for water system | 2d | 2025-12-28 A | 2025-12-29 A | HAL-E-PS-EN-0040 | 100% | 2026-02-07 | 2026-02-08 |  |  |  | 03 | 06 |
| HAL-E-PA-EN-0050 |  | Air valve | 2d | 2025-12-28 A | 2025-12-29 A | HAL-E-PS-EN-0050 | 100% | 2026-02-09 | 2026-02-10 |  |  |  | 03 | 06 |
| HAL-E-PA-EN-0060 |  | Washout valve | 2d | 2025-12-28 A | 2025-12-29 A | HAL-E-PS-EN-0060 | 100% | 2026-02-11 | 2026-02-12 |  |  |  | 03 | 06 |
| HAL-E-PA-EN-0070 |  | Gate valve | 2d | 2025-12-28 A | 2025-12-29 A | HAL-E-PS-EN-0070 | 100% | 2026-02-14 | 2026-02-15 |  |  |  | 03 | 06 |
| HAL-E-PA-EN-0080 |  | GRP pipes | 2d | 2025-12-28 A | 2025-12-29 A | HAL-E-PS-EN-0080 | 100% | 2026-02-16 | 2026-02-17 |  |  |  | 03 | 06 |
|  | 2 | **MATERIAL SUBMITTAL** |  | 2025-12-18 | 2026-08-16 |  |  |  |  |  |  |  |  |  |
|  | 1 | **PREPARATION AND SUBMITTAL** |  | 2025-12-18 | 2026-08-15 |  |  |  |  |  |  |  |  |  |
|  | 6 | **STRUCTURAL** |  | 2025-12-18 | 2026-01-05 |  |  |  |  |  |  |  |  |  |
| HAL-E-MS-C-0020 |  | Concrete mix | 2d | 2025-12-18 A | 2025-12-18 A | HAL-E-PA-C-0020 | 100% | 2026-01-11 | 2026-01-12 | Purchaser [32 h]; Construction Cost [77638.6] | 77,638.61 | 77,638.61 | 03 | 01 |
| HAL-E-MS-C-0030 |  | Polyethylene sheet | 2d | 2025-12-31 A | 2025-12-31 A | HAL-E-PA-C-0030 | 100% | 2026-01-14 | 2026-01-15 | Purchaser [32 h]; Construction Cost [4907.25] | 4,907.25 | 4,907.25 | 03 | 01 |
| HAL-E-MS-C-0040 |  | Bitumen paint | 2d | 2025-12-31 A | 2025-12-31 A | HAL-E-PA-C-0040 | 100% | 2026-01-17 | 2026-01-18 | Purchaser [32 h]; Construction Cost [4506.98] | 4,506.98 | 4,506.98 | 03 | 01 |
| HAL-E-MS-C-0050 |  | Rebar | 2d | 2025-12-31 A | 2025-12-31 A | HAL-E-PA-C-0050 | 100% | 2026-01-19 | 2026-01-20 | Purchaser [32 h]; Construction Cost [116458] | 116,457.91 | 116,457.91 | 03 | 01 |
| HAL-E-MS-C-0010 |  | Anti termite | 2d | 2026-01-05 A | 2026-01-05 A | HAL-E-PA-C-0010 | 100% | 2026-01-13 | 2026-01-14 | Purchaser [32 h]; Construction Cost [6870.15] | 6,870.15 | 6,870.15 | 03 | 01 |

| ID | WBS | Activity | Duration | Start | Finish | Predecessors | Complete | Planned start | Planned finish | Resources | Cost | Actual cost | Phasing Code Category | Discipline | Remarks |
| --- | --- | --- | --- | --- | --- | --- | --- | --- | --- | --- | --- | --- | --- | --- | --- |
|  | 1 | **ARCHITECTURAL** |  | 2025-12-21 | 2026-03-24 |  |  |  |  |  |  |  |  |  |  |
| HAL-E-MS-A-0030 |  | Steel ladder | 2d | 2025-12-21 A | 2026-01-01 A | HAL-E-PA-A-0050 | 100% | 2026-01-31 | 2026-02-01 | Purchaser [32 h]; Construction Cost [2322] | 2,322 | 2,322 | 03 | 02 |  |
| HAL-E-MS-A-1700 |  | PES -Steel Structure | 2d | 2025-12-21 A | 2026-01-01 A | HAL-E-PA-A-0020 | 100% | 2026-01-17 | 2026-01-18 | Purchaser [32 h]; Construction Cost [380511] | 380,511 | 380,511 | 03 | 02 | 1 |
| HAL-E-MS-A-0100 |  | Doors | 2d | 2026-01-05 A | 2026-01-05 A | HAL-E-PA-A-0120 | 100% | 2026-01-21 | 2026-01-22 | Purchaser [32 h]; Construction Cost [34884] | 34,884 | 34,884 | 03 | 02 |  |
| HAL-E-MS-A-0160 |  | Internl paint | 2d | 2026-01-11 A | 2026-01-11 A | HAL-E-PA-A-0180 | 100% | 2026-02-05 | 2026-02-07 | Purchaser [32 h]; Construction Cost [6506.32] | 6,506.32 | 6,506.32 | 03 | 02 |  |
| HAL-E-MS-A-0040 |  | Steel gratings | 2d | 2026-02-05 A | 2026-02-05 A | HAL-E-PA-A-0060 | 100% | 2026-03-12 | 2026-03-14 | Purchaser [32 h]; Construction Cost [1522.8] | 1,522.8 | 1,522.8 | 03 | 02 |  |
| HAL-E-MS-A-0050 |  | Steel rails | 2d | 2026-02-05 A | 2026-02-05 A | HAL-E-PA-A-0070 | 100% | 2026-03-12 | 2026-03-14 | Purchaser [32 h]; Construction Cost [1830.6] | 1,830.6 | 1,830.6 | 03 | 02 |  |
| HAL-E-MS-A-0170 |  | Gypsum board | 2d | 2026-02-08 A | 2026-02-08 A | HAL-E-PA-A-0190 | 100% | 2026-03-10 | 2026-03-11 | Purchaser [32 h]; Construction Cost [10901.2] | 10,901.25 | 10,901.25 | 03 | 02 |  |
| HAL-E-MS-A-0120 |  | Ceramic tiles | 2d | 2026-03-05 A | 2026-03-05 A | HAL-E-PA-A-0140 | 100% | 2026-03-11 | 2026-03-12 | Purchaser [32 h]; Construction Cost [17997.5] | 17,997.53 | 17,997.53 | 03 | 02 |  |
| HAL-E-MS-A-0130 |  | Granite strip | 2d | 2026-03-05 A | 2026-03-05 A | HAL-E-PA-A-0150 | 100% | 2026-03-11 | 2026-03-12 | Purchaser [32 h]; Construction Cost [355.05] | 355.05 | 355.05 | 03 | 02 |  |
| HAL-E-MS-A-0020 |  | Concrete masonry unit (CMU) | 2d | 2026-03-10 A | 2026-03-10 A | HAL-E-PA-A-0040 | 100% | 2026-03-16 | 2026-03-17 | Purchaser [32 h]; Construction Cost [15724.8] | 15,724.8 | 15,724.8 | 03 | 02 |  |
| HAL-E-MS-A-0110 |  | Windows | 2d | 2026-03-11 A | 2026-03-11 A | HAL-E-PA-A-0130 | 100% | 2026-03-18 | 2026-03-21 | Purchaser [32 h]; Construction Cost [22140] | 22,140 | 22,140 | 03 | 02 |  |
| HAL-E-MS-A-1720 |  | Aluminum Composite Panel | 2d | 2026-03-11 A | 2026-03-11 A | HAL-E-PA-A-0200 | 100% | 2026-03-14 | 2026-03-15 | Purchaser [32 h]; Construction Cost [42889.5] | 42,889.5 | 42,889.5 | 03 | 02 |  |
| HAL-E-MS-A-0150 |  | Epoxy paint | 1.12d | 2026-03-24 A | 2026-03-24 A | HAL-E-PA-A-0170 | 100% | 2026-04-06 | 2026-04-07 | Purchaser [32 h]; Construction Cost [25029] | 25,029 | 25,029 | 03 | 02 |  |
| HAL-E-MS-A-1750 |  | Steel fence and gates | 2d | 2026-03-24 A | 2026-03-24 A | HAL-E-PA-A-0230 | 100% | 2026-04-08 | 2026-04-09 | Purchaser [32 h]; Construction Cost [549.45] | 549.45 | 549.45 | 03 | 02 |  |
| HAL-E-MS-A-1760 |  | Identification sign; ID01 & ID02 | 2d | 2026-03-24 A | 2026-03-24 A | HAL-E-PA-A-0240 | 100% | 2026-04-11 | 2026-04-12 | Purchaser [32 h]; Construction Cost [2268] | 2,268 | 2,268 | 03 | 02 |  |
|  | 2 | **MECHANICAL** |  | 2025-12-27 | 2026-02-01 |  |  |  |  |  |  |  |  |  |  |
| HAL-E-MS-M-0080 |  | PPR pipes | 2d | 2025-12-27 A | 2025-12-27 A | HAL-E-PA-M-0030 | 100% | 2026-01-12 | 2026-01-13 | Purchaser [32 h]; Construction Cost [5295.38] | 5,295.38 | 5,295.38 | 03 | 03 |  |
| HAL-E-MS-M-0100 |  | Capped connection | 2d | 2025-12-27 A | 2025-12-27 A | HAL-E-PA-M-0150 | 100% | 2026-02-11 | 2026-02-12 | Purchaser [32 h]; Construction Cost [70.2] | 70.2 | 70.2 | 03 | 03 |  |
| HAL-E-MS-M-0110 |  | UPVC pipes | 2d | 2025-12-27 A | 2025-12-27 A | HAL-E-PA-M-0160 | 100% | 2026-02-07 | 2026-02-08 | Purchaser [32 h]; Construction Cost [6896.1] | 6,896.1 | 6,896.1 | 03 | 03 |  |
| HAL-E-MS-M-0160 |  | Western water closet | 2d | 2025-12-27 A | 2025-12-27 A | HAL-E-PA-M-0210 | 100% | 2026-02-18 | 2026-02-21 | Purchaser [32 h]; Construction Cost [4406.4] | 4,406.4 | 4,406.4 | 03 | 03 |  |
| HAL-E-MS-M-0190 |  | Lavatory / wash basin | 2d | 2025-12-27 A | 2025-12-27 A | HAL-E-PA-M-0240 | 100% | 2026-02-25 | 2026-03-01 | Purchaser [32 h]; Construction Cost [4968] | 4,968 | 4,968 | 03 | 03 |  |
| HAL-E-MS-M-0250 |  | Fire pumps | 2d | 2025-12-29 A | 2025-12-29 A | HAL-E-PA-M-0270 | 100% | 2026-03-10 | 2026-03-12 | Purchaser [32 h]; Construction Cost [16200] | 16,200 | 16,200 | 03 | 03 |  |
| HAL-E-MS-M-0310 |  | Booster pump | 4d | 2025-12-29 A | 2025-12-29 A | HAL-E-PA-M-0330 | 100% | 2026-03-15 | 2026-03-21 | Purchaser [32 h]; Construction Cost [1890] | 1,890 | 1,890 | 03 | 03 |  |
| HAL-E-MS-M-0010 |  | U/G HDPE pipes | 2d | 2025-12-30 A | 2025-12-30 A | HAL-E-PA-M-0070 | 100% | 2026-01-27 | 2026-01-28 | Purchaser [32 h]; Construction Cost [7547.64] | 7,547.64 | 7,547.64 | 03 | 03 |  |
| HAL-E-MS-M-0140 |  | Gully trap | 2d | 2026-01-01 A | 2026-01-01 A | HAL-E-PA-M-0190 | 100% | 2026-02-18 | 2026-02-21 | Purchaser [32 h]; Construction Cost [1134] | 1,134 | 1,134 | 03 | 03 |  |
| HAL-E-MS-M-0320 |  | GRP tank | 1.12d | 2026-01-05 A | 2026-01-05 A | HAL-E-PA-M-0340 | 100% | 2026-02-21 | 2026-02-23 | Purchaser [32 h]; Construction Cost [18360] | 18,360 | 18,360 | 03 | 03 |  |
| HAL-E-MS-M-0340 |  | Warning tapes | 2d | 2026-01-06 A | 2026-01-06 A | HAL-E-PA-M-0080 | 100% | 2026-01-19 | 2026-01-20 | Purchaser [32 h]; Construction Cost [1667.4] | 1,667.4 | 1,667.4 | 03 | 03 |  |
| HAL-E-MS-M-0090 |  | Ball valve | 2d | 2026-01-07 A | 2026-01-07 A | HAL-E-PA-M-0140 | 100% | 2026-02-02 | 2026-02-03 | Purchaser [32 h]; Construction Cost [872.1] | 872.1 | 872.1 | 03 | 03 |  |
| HAL-E-MS-M-0330 |  | Water supply valves | 2d | 2026-01-10 A | 2026-01-10 A | HAL-E-PA-M-0350 | 100% | 2026-03-08 | 2026-03-10 | Purchaser [32 h]; Construction Cost [2970] | 2,970 | 2,970 | 03 | 03 |  |
| HAL-E-MS-M-0020 |  | Seamless black steel or ERW pipes | 2d | 2026-01-11 A | 2026-01-11 A | HAL-E-PA-M-0010 | 100% | 2026-01-18 | 2026-01-19 | Purchaser [32 h]; Construction Cost [16392] | 16,391.97 | 16,391.97 | 03 | 03 |  |
| HAL-E-MS-M-0150 |  | Electric water heater | 2d | 2026-01-11 A | 2026-01-11 A | HAL-E-PA-M-0200 | 100% | 2026-02-15 | 2026-02-16 | Purchaser [32 h]; Construction Cost [432] | 432 | 432 | 03 | 03 |  |
| HAL-E-MS-M-0180 |  | Toilet Fittings | 1.62d | 2026-01-11 A | 2026-01-11 A | HAL-E-PA-M-0230 | 100% | 2026-02-19 | 2026-02-21 | Purchaser [32 h]; Construction Cost [5294.7] | 5,294.7 | 5,294.7 | 03 | 03 |  |
| HAL-E-MS-M-0170 |  | Bib tap | 2d | 2026-01-13 A | 2026-01-13 A | HAL-E-PA-M-0220 | 100% | 2026-02-23 | 2026-02-25 | Purchaser [32 h]; Construction Cost [540] | 540 | 540 | 03 | 03 |  |
| HAL-E-MS-M-3410 |  | Water tap | 2d | 2026-01-13 A | 2026-01-13 A | HAL-E-PA-M-0320 | 100% | 2026-01-13 | 2026-01-14 | Purchaser [32 h]; Construction Cost [648] | 648 | 648 | 03 | 03 |  |
| HAL-E-MS-M-0120 |  | Roof vent caps | 2d | 2026-01-14 A | 2026-01-14 A | HAL-E-PA-M-0170 | 100% | 2026-02-16 | 2026-02-17 | Purchaser [32 h]; Construction Cost [202.5] | 202.5 | 202.5 | 03 | 03 |  |
| HAL-E-MS-M-0130 |  | Floor drain | 2d | 2026-01-14 A | 2026-01-14 A | HAL-E-PA-M-0180 | 100% | 2026-02-18 | 2026-02-21 | Purchaser [32 h]; Construction Cost [2592] | 2,592 | 2,592 | 03 | 03 |  |
| HAL-E-MS-M-0030 |  | Fire hose cabinet | 2d | 2026-01-17 A | 2026-01-17 A | HAL-E-PA-M-0090 | 100% | 2026-02-04 | 2026-02-05 | Purchaser [32 h]; Construction Cost [3024] | 3,024 | 3,024 | 03 | 03 |  |
| HAL-E-MS-M-0040 |  | Automatic air release valve | 2d | 2026-01-21 A | 2026-01-21 A | HAL-E-PA-M-0100 | 100% | 2026-02-04 | 2026-02-05 | Purchaser [32 h]; Construction Cost [114.75] | 114.75 | 114.75 | 03 | 03 |  |
| HAL-E-MS-M-0050 |  | OS & Y gate valve | 2d | 2026-01-21 A | 2026-01-21 A | HAL-E-PA-M-0110 | 100% | 2026-02-07 | 2026-02-08 | Purchaser [32 h]; Construction Cost [1233.9] | 1,233.9 | 1,233.9 | 03 | 03 |  |
| HAL-E-MS-M-0060 |  | Fire alarm check valve | 2d | 2026-01-21 A | 2026-01-21 A | HAL-E-PA-M-0120 | 100% | 2026-02-09 | 2026-02-10 | Purchaser [32 h]; Construction Cost [1755] | 1,755 | 1,755 | 03 | 03 |  |
| HAL-E-MS-M-0270 |  | Fire fighting valves | 2d | 2026-01-21 A | 2026-01-21 A | HAL-E-PA-M-0280 | 100% | 2026-02-18 | 2026-02-21 | Purchaser [32 h]; Construction Cost [3103.65] | 3,103.65 | 3,103.65 | 03 | 03 |  |
| HAL-E-MS-M-0240 |  | Exhaust diffuser | 2d | 2026-01-29 A | 2026-01-29 A | HAL-E-PA-M-0060 | 100% | 2026-02-11 | 2026-02-12 | Purchaser [32 h]; Construction Cost [2430] | 2,430 | 2,430 | 03 | 03 |  |
| HAL-E-MS-M-0220 |  | HVAC duct | 2d | 2026-01-31 A | 2026-01-31 A | HAL-E-PA-M-0040 | 100% | 2026-02-07 | 2026-02-08 | Purchaser [32 h]; Construction Cost [38380.5] | 38,380.5 | 38,380.5 | 03 | 03 |  |
| HAL-E-MS-M-0230 |  | Flexible duct | 2d | 2026-01-31 A | 2026-01-31 A | HAL-E-PA-M-0050 | 100% | 2026-02-09 | 2026-02-10 | Purchaser [32 h]; Construction Cost [4577.04] | 4,577.04 | 4,577.04 | 03 | 03 |  |
| HAL-E-MS-M-0200 |  | Inline exhaust fans | 2d | 2026-02-01 A | 2026-02-01 A | HAL-E-PA-M-0250 | 100% | 2026-02-14 | 2026-02-15 | Purchaser [32 h]; Construction Cost [2531.25] | 2,531.25 | 2,531.25 | 03 | 03 |  |
| HAL-E-MS-M-0210 |  | Wall propeller type exhaust fans | 2d | 2026-02-01 A | 2026-02-01 A | HAL-E-PA-M-0260 | 100% | 2026-02-16 | 2026-02-17 | Purchaser [32 h]; Construction Cost [4725] | 4,725 | 4,725 | 03 | 03 |  |

| ID | WBS | Activity | Duration | Start | Finish | Predecessors | Complete | Planned start | Planned finish | Resources | Cost | Actual cost | Phasing Code Category | Discipline |
| --- | --- | --- | --- | --- | --- | --- | --- | --- | --- | --- | --- | --- | --- | --- |
|  | 3 | **ELECTRICAL** |  | 2025-12-23 | 2026-03-24 |  |  |  |  |  |  |  |  |  |
| HAL-E-MS-E-0040 |  | PVC conduits | 2d | 2025-12-23 A | 2025-12-23 A | HAL-E-PA-E-0010 | 100% | 2026-01-12 | 2026-01-13 | Purchaser [32 h]; Construction Cost [429.3] | 429.3 | 429.3 | 03 | 04 |
| HAL-E-MS-E-0010 |  | Low Voltage cables | 2d | 2025-12-27 A | 2025-12-27 A | HAL-E-PA-E-0070 | 100% | 2026-01-26 | 2026-01-27 | Purchaser [32 h]; Construction Cost [11559] | 11,559 | 11,559 | 03 | 04 |
| HAL-E-MS-E-0050 |  | Wires | 2d | 2025-12-27 A | 2025-12-27 A | HAL-E-PA-E-0020 | 100% | 2026-01-14 | 2026-01-15 | Purchaser [32 h]; Construction Cost [1215] | 1,215 | 1,215 | 03 | 04 |
| HAL-E-MS-E-0250 |  | Solar system | 4d | 2026-01-05 A | 2026-01-05 A | HAL-E-PA-E-0250 | 100% | 2026-03-16 | 2026-03-22 | Construction Cost [59400]; Purchaser [32 h] | 59,400 | 59,400 | 03 | 04 |
| HAL-E-MS-E-0140 |  | Wiring devices | 2d | 2026-01-06 A | 2026-01-06 A | HAL-E-PA-E-0050 | 100% | 2026-01-21 | 2026-01-22 | Purchaser [32 h]; Construction Cost [5626.8] | 5,626.8 | 5,626.8 | 03 | 04 |
| HAL-E-MS-E-0160 |  | HDPE ducts | 2d | 2026-01-06 A | 2026-01-06 A | HAL-E-PA-E-0060 | 100% | 2026-01-24 | 2026-01-25 | Purchaser [32 h]; Construction Cost [30499.5] | 30,499.47 | 30,499.47 | 03 | 04 |
| HAL-E-MS-E-210 |  | Cable Tray | 2d | 2026-01-06 A | 2026-01-06 A | HAL-E-PA-E-0030 | 100% | 2026-01-17 | 2026-01-18 | Purchaser [32 h]; Construction Cost [78.3] | 78.3 | 78.3 | 03 | 04 |
| HAL-E-MS-E-0060 |  | Suspended High Bay LED lights | 2d | 2026-01-13 A | 2026-01-13 A | HAL-E-PA-E-0120 | 100% | 2026-02-10 | 2026-02-11 | Purchaser [32 h]; Construction Cost [5599.8] | 5,599.8 | 5,599.8 | 03 | 04 |
| HAL-E-MS-E-0070 |  | Flood lights | 2d | 2026-01-13 A | 2026-01-13 A | HAL-E-PA-E-0130 | 100% | 2026-02-12 | 2026-02-14 | Purchaser [32 h]; Construction Cost [1026] | 1,026 | 1,026 | 03 | 04 |
| HAL-E-MS-E-0080 |  | Recessed mounted LED downlight | 2d | 2026-01-13 A | 2026-01-13 A | HAL-E-PA-E-0140 | 100% | 2026-02-15 | 2026-02-16 | Purchaser [32 h]; Construction Cost [3672] | 3,672 | 3,672 | 03 | 04 |
| HAL-E-MS-E-0090 |  | LED Emergency Lights wall mounted | 2d | 2026-01-13 A | 2026-01-13 A | HAL-E-PA-E-0150 | 100% | 2026-02-17 | 2026-02-19 | Purchaser [32 h]; Construction Cost [1555.2] | 1,555.2 | 1,555.2 | 03 | 04 |
| HAL-E-MS-E-0100 |  | LED Emergency Exit Light | 2d | 2026-01-13 A | 2026-01-13 A | HAL-E-PA-E-0160 | 100% | 2026-03-11 | 2026-03-14 | Purchaser [32 h]; Construction Cost [529.2] | 529.2 | 529.2 | 03 | 04 |
| HAL-E-MS-E-0170 |  | Street Lighting poles | 2d | 2026-01-13 A | 2026-01-13 A | HAL-E-PA-E-0200 | 100% | 2026-03-22 | 2026-03-24 | Purchaser [32 h]; Construction Cost [6433.83] | 6,433.83 | 6,433.83 | 03 | 04 |
| HAL-E-MS-E-0190 |  | Surface mounted lights | 2d | 2026-01-13 A | 2026-01-13 A | HAL-E-PA-E-0220 | 100% | 2026-03-26 | 2026-03-29 | Purchaser [32 h]; Construction Cost [7068.6] | 7,068.6 | 7,068.6 | 03 | 04 |
| HAL-E-MS-E-0130 |  | Fire alarm system | 2d | 2026-01-21 A | 2026-01-21 A | HAL-E-PA-E-0180 | 100% | 2026-03-22 | 2026-03-24 | Purchaser [32 h]; Construction Cost [7622.1] | 7,622.1 | 7,622.1 | 03 | 04 |
| HAL-E-MS-E-0120 |  | Grounding system | 2d | 2026-01-29 A | 2026-01-29 A | HAL-E-PA-E-0040 | 100% | 2026-02-07 | 2026-02-08 | Purchaser [32 h]; Construction Cost [10612.3] | 10,612.27 | 10,612.27 | 03 | 04 |
| HAL-E-MS-E-0240 |  | Access control system | 2d | 2026-02-04 A | 2026-02-04 A | HAL-E-PA-E-0240 | 100% | 2026-03-10 | 2026-03-12 | Construction Cost [6596.1]; Purchaser [32 h] | 6,596.1 | 6,596.1 | 03 | 04 |
| HAL-E-MS-E-0260 |  | Main program system & controller | 2d | 2026-02-10 A | 2026-02-10 A | HAL-E-PA-E-0260 | 100% | 2026-03-09 | 2026-03-10 | Construction Cost [4320]; Purchaser [32 h] | 4,320 | 4,320 | 03 | 04 |
| HAL-E-MS-E-0270 |  | PLC controller | 1d | 2026-02-10 A | 2026-02-10 A | HAL-E-PA-E-0270 | 100% | 2026-03-10 | 2026-03-11 | Construction Cost [8640]; Purchaser [32 h] | 8,640 | 8,640 | 03 | 04 |
| HAL-E-MS-E-0020 |  | Main distribution board (MDB) | 2d | 2026-02-15 A | 2026-02-15 A | HAL-E-PA-E-0080 | 100% | 2026-02-28 | 2026-03-02 | Purchaser [32 h]; Construction Cost [6912] | 6,912 | 6,912 | 03 | 04 |
| HAL-E-MS-E-0180 |  | Distribution board for pump room | 2d | 2026-02-15 A | 2026-02-15 A | HAL-E-PA-E-0210 | 100% | 2026-03-12 | 2026-03-15 | Purchaser [32 h]; Construction Cost [280.8] | 280.8 | 280.8 | 03 | 04 |
| HAL-E-MS-E-190 |  | Lighting panel board | 2d | 2026-02-15 A | 2026-02-15 A | HAL-E-PA-E-0090 | 100% | 2026-03-05 | 2026-03-08 | Purchaser [32 h]; Construction Cost [4104] | 4,104 | 4,104 | 03 | 04 |
| HAL-E-MS-E-200 |  | PP-AC panel | 2d | 2026-02-15 A | 2026-02-15 A | HAL-E-PA-E-0100 | 100% | 2026-03-08 | 2026-03-10 | Purchaser [32 h]; Construction Cost [4941] | 4,941 | 4,941 | 03 | 04 |
| HAL-E-MS-E-0230 |  | CCTV System | 2d | 2026-02-16 A | 2026-02-16 A | HAL-E-PA-E-0230 | 100% | 2026-03-10 | 2026-03-12 | Construction Cost [17952.3]; Purchaser [32 h] | 17,952.3 | 17,952.3 | 03 | 04 |
| HAL-E-MS-E-0110 |  | Wall mounted, duplex, telephone and data outlet | 2d | 2026-03-12 A | 2026-03-12 A | HAL-E-PA-E-0170 | 100% | 2026-04-02 | 2026-04-04 | Purchaser [32 h]; Construction Cost [6320.7] | 6,320.7 | 6,320.7 | 03 | 04 |
| HAL-E-MS-E-0030 |  | Disconnect switches | 1.62d | 2026-03-24 A | 2026-03-24 A | HAL-E-PA-E-0110 | 100% | 2026-04-04 | 2026-04-05 | Purchaser [32 h]; Construction Cost [7001.1] | 7,001.1 | 7,001.1 | 03 | 04 |

| ID | WBS | Activity | Duration | Start | Finish | Predecessors | Complete | Planned start | Planned finish | Resources | Cost | Actual cost | Phasing Code Category | Discipline | Remarks |
| --- | --- | --- | --- | --- | --- | --- | --- | --- | --- | --- | --- | --- | --- | --- | --- |
|  | 4 | **EXTERNAL** |  | 2026-03-02 | 2026-08-15 |  |  |  |  |  |  |  |  |  |  |
| HAL-E-MS-EX-0010 |  | Asphalt works | 2d | 2026-03-02 A | 2026-03-02 A | HAL-E-PA-EX-0010 | 100% | 2026-03-11 | 2026-03-12 | Purchaser [32 h]; Construction Cost [127890] | 127,889.94 | 127,889.94 | 03 | 06 |  |
| HAL-E-MS-EX-0040 |  | Road signs | 2d | 2026-04-16 A | 2026-04-16 A | HAL-E-PA-EX-0040 | 100% | 2026-04-20 | 2026-04-21 | Purchaser [32 h]; Construction Cost [2443.77] | 2,443.77 | 2,443.77 | 03 | 06 |  |
| HAL-E-MS-EX-0020 |  | Concrete parking bumper | 2d | 2026-05-20 A | 2026-05-20 A | HAL-E-PA-EX-0020 | 100% | 2026-05-25 | 2026-05-30 | Purchaser [32 h]; Construction Cost [709.56] | 709.56 |  | 03 | 06 |  |
| HAL-E-MS-EX-0060 |  | Interlock tiles | 2d | 2026-05-20 A | 2026-05-20 A | HAL-E-PA-EX-0060 | 100% | 2026-05-25 | 2026-05-30 | Purchaser [32 h]; Construction Cost [9528.98] | 9,528.98 |  | 03 | 06 |  |
| HAL-E-MS-EX-0070 |  | Curbstones | 2d | 2026-05-20 A | 2026-05-20 A | HAL-E-PA-EX-0070 | 100% | 2026-05-25 | 2026-05-30 | Purchaser [32 h]; Construction Cost [6419.25] | 6,419.25 |  | 03 | 06 |  |
| HAL-E-MS-EX-0030 |  | Road markings | 2d | 2026-08-15 A | 2026-08-15 A | HAL-E-PA-EX-0030 | 100% | 2026-08-24 | 2026-08-25 | Purchaser [32 h]; Construction Cost [1767.15] | 1,767.15 | 1,767.15 | 03 | 06 | 1 |
| HAL-E-MS-EX-0080 |  | Gravel bedding | 2d | 2026-08-15 A | 2026-08-15 A | HAL-E-PA-EX-0080 | 100% | 2026-08-24 | 2026-08-25 | Purchaser [32 h]; Construction Cost [3862.65] | 3,862.65 | 3,862.65 | 03 | 06 | 1 |
|  | 5 | **ENVIRONMETAL** |  | 2025-12-27 | 2026-01-24 |  |  |  |  |  |  |  |  |  |  |
| HAL-E-MS-EN-0080 |  | GRP pipes | 2d | 2025-12-27 A | 2025-12-27 A | HAL-E-PA-EN-0080 | 100% | 2026-02-18 | 2026-02-21 | Purchaser [32 h]; Construction Cost [9637.17] | 9,637.17 | 9,637.17 | 03 | 06 |  |
| HAL-E-MS-EN-0010 |  | HDPE pipes for fire system | 2d | 2025-12-30 A | 2025-12-30 A | HAL-E-PA-EN-0010 | 100% | 2026-01-17 | 2026-01-18 | Purchaser [32 h]; Construction Cost [7290.27] | 7,290.27 | 7,290.27 | 03 | 06 |  |
| HAL-E-MS-EN-0030 |  | HDPE pipes for water supply system | 2d | 2025-12-30 A | 2025-12-30 A | HAL-E-PA-EN-0030 | 100% | 2026-01-21 | 2026-01-22 | Purchaser [32 h]; Construction Cost [7093.2] | 7,093.2 | 7,093.2 | 03 | 06 |  |
| HAL-E-MS-EN-0020 |  | Directly buried gate valve for fire system | 2d | 2026-01-24 A | 2026-01-24 A | HAL-E-PA-EN-0020 | 100% | 2026-02-07 | 2026-02-08 | Purchaser [32 h]; Construction Cost [1317.6] | 1,317.6 | 1,317.6 | 03 | 06 |  |
| HAL-E-MS-EN-0040 |  | Directly buried gate valve for water system | 2d | 2026-01-24 A | 2026-01-24 A | HAL-E-PA-EN-0040 | 100% | 2026-02-09 | 2026-02-10 | Purchaser [32 h]; Construction Cost [1328.4] | 1,328.4 | 1,328.4 | 03 | 06 |  |
| HAL-E-MS-EN-0050 |  | Air valve | 2d | 2026-01-24 A | 2026-01-24 A | HAL-E-PA-EN-0050 | 100% | 2026-02-11 | 2026-02-12 | Purchaser [32 h]; Construction Cost [648] | 648 | 648 | 03 | 06 |  |
| HAL-E-MS-EN-0060 |  | Washout valve | 2d | 2026-01-24 A | 2026-01-24 A | HAL-E-PA-EN-0060 | 100% | 2026-02-14 | 2026-02-15 | Purchaser [32 h]; Construction Cost [756] | 756 | 756 | 03 | 06 |  |
| HAL-E-MS-EN-0070 |  | Gate valve | 2d | 2026-01-24 A | 2026-01-24 A | HAL-E-PA-EN-0070 | 100% | 2026-02-16 | 2026-02-17 | Purchaser [32 h]; Construction Cost [270] | 270 | 270 | 03 | 06 |  |
|  | 2 | **REVIEW AND APPROVAL** |  | 2025-12-18 | 2026-08-16 |  |  |  |  |  |  |  |  |  |  |
|  | 6 | **STRUCTURAL** |  | 2025-12-18 | 2026-01-05 |  |  |  |  |  |  |  |  |  |  |
| HAL-E-MA-C-0020 |  | Concrete mix | 5d | 2025-12-18 A | 2025-12-21 A | HAL-E-MS-C-0020 | 100% | 2026-01-13 | 2026-01-18 | Construction Cost |  |  | 03 | 01 |  |
| HAL-E-MA-C-0030 |  | Polyethylene sheet | 5d | 2025-12-31 A | 2025-12-31 A | HAL-E-MS-C-0030 | 100% | 2026-01-17 | 2026-01-21 | Construction Cost |  |  | 03 | 01 |  |
| HAL-E-MA-C-0040 |  | Bitumen paint | 5d | 2025-12-31 A | 2025-12-31 A | HAL-E-MS-C-0040 | 100% | 2026-01-19 | 2026-01-24 | Construction Cost |  |  | 03 | 01 |  |
| HAL-E-MA-C-0050 |  | Rebar | 5d | 2025-12-31 A | 2025-12-31 A | HAL-E-MS-C-0050 | 100% | 2026-01-21 | 2026-01-26 | Construction Cost |  |  | 03 | 01 |  |
| HAL-E-MA-C-0010 |  | Anti termite | 5d | 2026-01-05 A | 2026-01-05 A | HAL-E-MS-C-0010 | 100% | 2026-01-15 | 2026-01-20 | Construction Cost |  |  | 03 | 01 |  |

| ID | WBS | Activity | Duration | Start | Finish | Predecessors | Complete | Planned start | Planned finish | Resources | Phasing Code Category | Discipline |
| --- | --- | --- | --- | --- | --- | --- | --- | --- | --- | --- | --- | --- |
|  | 1 | **ARCHITECTURAL** |  | 2025-12-21 | 2026-03-29 |  |  |  |  |  |  |  |
| HAL-E-MA-A-0030 |  | Steel ladder | 5d | 2025-12-21 A | 2025-12-22 A | HAL-E-MS-A-0030 | 100% | 2026-02-02 | 2026-02-07 | Construction Cost | 03 | 02 |
| HAL-E-MA-A-1700 |  | PES -Steel Structure | 5d | 2025-12-21 A | 2025-12-22 A | HAL-E-MS-A-1700 | 100% | 2026-01-19 | 2026-01-24 | Purchaser; Construction Cost | 03 | 02 |
| HAL-E-MA-A-0100 |  | Doors | 5d | 2026-01-05 A | 2026-01-05 A | HAL-E-MS-A-0100 | 100% | 2026-01-24 | 2026-01-28 | Construction Cost | 03 | 02 |
| HAL-E-MA-A-0160 |  | Internl paint | 5d | 2026-01-11 A | 2026-01-15 A | HAL-E-MS-A-0160 | 100% | 2026-02-08 | 2026-02-12 | Construction Cost | 03 | 02 |
| HAL-E-MA-A-0170 |  | Gypsum board | 7d | 2026-02-08 A | 2026-02-11 A | HAL-E-MS-A-0170 | 100% | 2026-03-12 | 2026-03-21 | Construction Cost | 03 | 02 |
| HAL-E-MA-A-0120 |  | Ceramic tiles | 4.12d | 2026-03-05 A | 2026-03-07 A | HAL-E-MS-A-0120 | 100% | 2026-03-14 | 2026-03-18 | Construction Cost | 03 | 02 |
| HAL-E-MA-A-0130 |  | Granite strip | 4.12d | 2026-03-05 A | 2026-03-07 A | HAL-E-MS-A-0130 | 100% | 2026-03-14 | 2026-03-18 | Construction Cost | 03 | 02 |
| HAL-E-MA-A-0020 |  | Concrete masonry unit (CMU) | 5d | 2026-03-10 A | 2026-03-10 A | HAL-E-MS-A-0020 | 100% | 2026-03-18 | 2026-03-24 | Construction Cost | 03 | 02 |
| HAL-E-MA-A-0110 |  | Windows | 4.62d | 2026-03-11 A | 2026-03-25 A | HAL-E-MS-A-0110 | 100% | 2026-03-22 | 2026-03-26 | Construction Cost | 03 | 02 |
| HAL-E-MA-A-1720 |  | Aluminum Composite Panel | 7d | 2026-03-11 A | 2026-03-25 A | HAL-E-MS-A-1720 | 100% | 2026-03-24 | 2026-03-31 | Purchaser; Construction Cost | 03 | 02 |
| HAL-E-MA-A-0040 |  | Steel gratings | 5d | 2026-03-24 A | 2026-03-29 A | HAL-E-MS-A-0040 | 100% | 2026-04-02 | 2026-04-07 | Construction Cost | 03 | 02 |
| HAL-E-MA-A-0050 |  | Steel rails | 5d | 2026-03-24 A | 2026-03-29 A | HAL-E-MS-A-0050 | 100% | 2026-04-02 | 2026-04-07 | Construction Cost | 03 | 02 |
| HAL-E-MA-A-0150 |  | Epoxy paint | 4.62d | 2026-03-24 A | 2026-03-29 A | HAL-E-MS-A-0150 | 100% | 2026-04-07 | 2026-04-12 | Construction Cost | 03 | 02 |
| HAL-E-MA-A-1750 |  | Steel fence and gates | 7d | 2026-03-24 A | 2026-03-29 A | HAL-E-MS-A-1750 | 100% | 2026-04-11 | 2026-04-18 | Purchaser; Construction Cost | 03 | 02 |
| HAL-E-MA-A-1760 |  | Identification sign; ID01 & ID02 | 7d | 2026-03-24 A | 2026-03-29 A | HAL-E-MS-A-1760 | 100% | 2026-04-13 | 2026-04-20 | Purchaser; Construction Cost | 03 | 02 |
|  | 2 | **MECHANICAL** |  | 2025-12-27 | 2026-02-16 |  |  |  |  |  |  |  |
| HAL-E-MA-M-0080 |  | PPR pipes | 5d | 2025-12-27 A | 2025-12-29 A | HAL-E-MS-M-0080 | 100% | 2026-01-14 | 2026-01-19 | Construction Cost | 03 | 03 |
| HAL-E-MA-M-0100 |  | Capped connection | 5d | 2025-12-27 A | 2025-12-29 A | HAL-E-MS-M-0100 | 100% | 2026-02-14 | 2026-02-19 | Construction Cost | 03 | 03 |
| HAL-E-MA-M-0110 |  | UPVC pipes | 5d | 2025-12-27 A | 2025-12-31 A | HAL-E-MS-M-0110 | 100% | 2026-02-09 | 2026-02-14 | Construction Cost | 03 | 03 |
| HAL-E-MA-M-0160 |  | Western water closet | 3.88d | 2025-12-27 A | 2025-12-31 A | HAL-E-MS-M-0160, HAL-E-MA-M-0050, HAL-E-MA-M-0060 | 100% | 2026-02-21 | 2026-02-26 | Construction Cost | 03 | 03 |
| HAL-E-MA-M-0190 |  | Lavatory / wash basin | 4.75d | 2025-12-27 A | 2025-12-31 A | HAL-E-MS-M-0190 | 100% | 2026-03-01 | 2026-03-05 | Construction Cost | 03 | 03 |
| HAL-E-MA-M-0250 |  | Fire pumps | 6.62d | 2025-12-29 A | 2026-01-04 A | HAL-E-MS-M-0250 | 100% | 2026-03-12 | 2026-03-21 | Construction Cost | 03 | 03 |
| HAL-E-MA-M-0310 |  | Booster pump | 4.62d | 2025-12-29 A | 2026-01-04 A | HAL-E-MS-M-0310 | 100% | 2026-03-21 | 2026-03-25 | Construction Cost | 03 | 03 |
| HAL-E-MA-M-0010 |  | U/G HDPE pipes | 5d | 2025-12-30 A | 2026-01-04 A | HAL-E-MS-M-0010 | 100% | 2026-01-29 | 2026-02-03 | Construction Cost | 03 | 03 |
| HAL-E-MA-M-0140 |  | Gully trap | 4.12d | 2026-01-01 A | 2026-01-04 A | HAL-E-MS-M-0140 | 100% | 2026-02-21 | 2026-02-26 | Construction Cost | 03 | 03 |
| HAL-E-MA-M-0150 |  | Electric water heater | 4.12d | 2026-01-05 A | 2026-01-05 A | HAL-E-MS-M-0150 | 100% | 2026-02-17 | 2026-02-23 | Construction Cost | 03 | 03 |
| HAL-E-MA-M-0320 |  | GRP tank | 4.62d | 2026-01-05 A | 2026-01-05 A | HAL-E-MS-M-0320 | 100% | 2026-02-23 | 2026-03-01 | Construction Cost | 03 | 03 |
| HAL-E-MA-M-0340 |  | Warning tapes | 5d | 2026-01-06 A | 2026-01-07 A | HAL-E-MS-M-0340 | 100% | 2026-01-21 | 2026-01-26 | Construction Cost | 03 | 03 |
| HAL-E-MA-M-0090 |  | Ball valve | 5d | 2026-01-07 A | 2026-01-08 A | HAL-E-MS-M-0090 | 100% | 2026-02-04 | 2026-02-09 | Construction Cost | 03 | 03 |
| HAL-E-MA-M-0330 |  | Water supply valves | 6.62d | 2026-01-10 A | 2026-01-17 A | HAL-E-MS-M-0330, HAL-E-MA-M-0200, HAL-E-MA-M-0270 | 100% | 2026-03-12 | 2026-03-22 | Construction Cost | 03 | 03 |
| HAL-E-MA-M-0020 |  | Seamless black steel or ERW pipes | 5d | 2026-01-11 A | 2026-01-18 A | HAL-E-MS-M-0020 | 100% | 2026-01-20 | 2026-01-25 | Construction Cost | 03 | 03 |
| HAL-E-MA-M-0180 |  | Toilet Fittings | 4.25d | 2026-01-11 A | 2026-01-17 A | HAL-E-MS-M-0180 | 100% | 2026-02-23 | 2026-02-28 | Construction Cost | 03 | 03 |
| HAL-E-MA-M-0170 |  | Bib tap | 4.75d | 2026-01-13 A | 2026-01-18 A | HAL-E-MS-M-0170 | 100% | 2026-02-25 | 2026-03-03 | Construction Cost | 03 | 03 |
| HAL-E-MA-M-3410 |  | Water tap | 5d | 2026-01-13 A | 2026-01-18 A | HAL-E-MS-M-3410 | 100% | 2026-02-23 | 2026-03-02 | Purchaser; Construction Cost | 03 | 03 |
| HAL-E-MA-M-0120 |  | Roof vent caps | 4.12d | 2026-01-14 A | 2026-01-18 A | HAL-E-MS-M-0120 | 100% | 2026-02-18 | 2026-02-24 | Construction Cost | 03 | 03 |
| HAL-E-MA-M-0130 |  | Floor drain | 4.12d | 2026-01-14 A | 2026-01-18 A | HAL-E-MS-M-0130, HAL-E-MA-M-0040 | 100% | 2026-02-21 | 2026-02-26 | Construction Cost | 03 | 03 |
| HAL-E-MA-M-0030 |  | Fire hose cabinet | 5d | 2026-01-17 A | 2026-01-19 A | HAL-E-MS-M-0030 | 100% | 2026-02-07 | 2026-02-11 | Construction Cost | 03 | 03 |
| HAL-E-MA-M-0040 |  | Automatic air release valve | 5d | 2026-01-21 A | 2026-01-29 A | HAL-E-MS-M-0040 | 100% | 2026-02-07 | 2026-02-11 | Construction Cost | 03 | 03 |
| HAL-E-MA-M-0050 |  | OS & Y gate valve | 5d | 2026-01-21 A | 2026-01-29 A | HAL-E-MS-M-0050 | 100% | 2026-02-09 | 2026-02-14 | Construction Cost | 03 | 03 |
| HAL-E-MA-M-0060 |  | Fire alarm check valve | 5d | 2026-01-21 A | 2026-01-29 A | HAL-E-MS-M-0060 | 100% | 2026-02-11 | 2026-02-16 | Construction Cost | 03 | 03 |
| HAL-E-MA-M-0270 |  | Fire fighting valves | 3.75d | 2026-01-21 A | 2026-01-29 A | HAL-E-MS-M-0270 | 100% | 2026-02-21 | 2026-02-26 | Construction Cost | 03 | 03 |
| HAL-E-MA-M-0240 |  | Exhaust diffuser | 5d | 2026-01-29 A | 2026-02-16 A | HAL-E-MS-M-0240 | 100% | 2026-02-14 | 2026-02-19 | Construction Cost | 03 | 03 |
| HAL-E-MA-M-0220 |  | HVAC duct | 5d | 2026-01-31 A | 2026-02-03 A | HAL-E-MS-M-0220 | 100% | 2026-02-09 | 2026-02-14 | Construction Cost | 03 | 03 |
| HAL-E-MA-M-0230 |  | Flexible duct | 5d | 2026-01-31 A | 2026-02-03 A | HAL-E-MS-M-0230 | 100% | 2026-02-11 | 2026-02-16 | Construction Cost | 03 | 03 |
| HAL-E-MA-M-0200 |  | Inline exhaust fans | 4.62d | 2026-02-01 A | 2026-02-02 A | HAL-E-MS-M-0200 | 100% | 2026-02-16 | 2026-02-21 | Construction Cost | 03 | 03 |
| HAL-E-MA-M-0210 |  | Wall propeller type exhaust fans | 3.88d | 2026-02-01 A | 2026-02-02 A | HAL-E-MS-M-0210 | 100% | 2026-02-18 | 2026-02-24 | Construction Cost | 03 | 03 |

| ID | WBS | Activity | Duration | Start | Finish | Predecessors | Complete | Planned start | Planned finish | Resources | Phasing Code Category | Discipline |
| --- | --- | --- | --- | --- | --- | --- | --- | --- | --- | --- | --- | --- |
|  | 3 | **ELECTRICAL** |  | 2025-12-23 | 2026-03-29 |  |  |  |  |  |  |  |
| HAL-E-MA-E-0040 |  | PVC conduits | 5d | 2025-12-23 A | 2025-12-25 A | HAL-E-MS-E-0040 | 100% | 2026-01-14 | 2026-01-19 | Construction Cost | 03 | 04 |
| HAL-E-MA-E-0010 |  | Low Voltage cables | 5d | 2025-12-27 A | 2026-01-04 A | HAL-E-MS-E-0010 | 100% | 2026-01-28 | 2026-02-02 | Construction Cost | 03 | 04 |
| HAL-E-MA-E-0050 |  | Wires | 5d | 2025-12-27 A | 2026-01-04 A | HAL-E-MS-E-0050 | 100% | 2026-01-17 | 2026-01-21 | Construction Cost | 03 | 04 |
| HAL-E-MA-E-0250 |  | Solar system | 2d | 2026-01-05 A | 2026-01-29 A | HAL-E-MS-E-0250 | 100% | 2026-03-22 | 2026-03-24 |  | 03 | 04 |
| HAL-E-MA-E-0140 |  | Wiring devices | 5d | 2026-01-06 A | 2026-01-07 A | HAL-E-MS-E-0140 | 100% | 2026-01-24 | 2026-01-28 | Construction Cost | 03 | 04 |
| HAL-E-MA-E-0160 |  | HDPE ducts | 5d | 2026-01-06 A | 2026-01-07 A | HAL-E-MS-E-0160 | 100% | 2026-01-26 | 2026-01-31 | Construction Cost | 03 | 04 |
| HAL-E-MA-E-210 |  | Cable Tray | 5d | 2026-01-06 A | 2026-01-07 A | HAL-E-MS-E-210 | 100% | 2026-01-19 | 2026-01-24 | Purchaser; Construction Cost | 03 | 04 |
| HAL-E-MA-E-0060 |  | Suspended High Bay LED lights | 5d | 2026-01-13 A | 2026-01-14 A | HAL-E-MS-E-0060 | 100% | 2026-02-12 | 2026-02-17 | Construction Cost | 03 | 04 |
| HAL-E-MA-E-0070 |  | Flood lights | 5d | 2026-01-13 A | 2026-01-14 A | HAL-E-MS-E-0070 | 100% | 2026-02-15 | 2026-02-21 | Construction Cost | 03 | 04 |
| HAL-E-MA-E-0080 |  | Recessed mounted LED downlight | 4.12d | 2026-01-13 A | 2026-01-14 A | HAL-E-MS-E-0080 | 100% | 2026-02-17 | 2026-02-23 | Construction Cost | 03 | 04 |
| HAL-E-MA-E-0090 |  | LED Emergency Lights wall mounted | 4.12d | 2026-01-13 A | 2026-01-14 A | HAL-E-MS-E-0090 | 100% | 2026-02-19 | 2026-02-25 | Construction Cost | 03 | 04 |
| HAL-E-MA-E-0100 |  | LED Emergency Exit Light | 7d | 2026-01-13 A | 2026-01-14 A | HAL-E-MS-E-0100 | 100% | 2026-03-14 | 2026-03-23 | Construction Cost | 03 | 04 |
| HAL-E-MA-E-0170 |  | Street Lighting poles | 4d | 2026-01-13 A | 2026-01-14 A | HAL-E-MS-E-0170 | 100% | 2026-03-24 | 2026-03-29 | Construction Cost | 03 | 04 |
| HAL-E-MA-E-0190 |  | Surface mounted lights | 4.12d | 2026-01-13 A | 2026-01-14 A | HAL-E-MS-E-0190 | 100% | 2026-03-29 | 2026-04-02 | Construction Cost | 03 | 04 |
| HAL-E-MA-E-0130 |  | Fire alarm system | 4.12d | 2026-01-21 A | 2026-01-29 A | HAL-E-MS-E-0130 | 100% | 2026-03-24 | 2026-03-29 | Construction Cost | 03 | 04 |
| HAL-E-MA-E-0120 |  | Grounding system | 5d | 2026-01-29 A | 2026-01-31 A | HAL-E-MS-E-0120 | 100% | 2026-02-09 | 2026-02-14 | Construction Cost | 03 | 04 |
| HAL-E-MA-E-0240 |  | Access control system | 2d | 2026-02-04 A | 2026-02-04 A | HAL-E-MS-E-0240, HAL-E-SS-E-1040, HAL-E-SS-M-710 | 100% | 2026-03-12 | 2026-03-15 |  | 03 | 04 |
| HAL-E-MA-E-0260 |  | Main program system & controller | 2d | 2026-02-10 A | 2026-02-28 A | HAL-E-MS-E-0260 | 100% | 2026-03-11 | 2026-03-12 |  | 03 | 04 |
| HAL-E-MA-E-0270 |  | PLC controller | 2d | 2026-02-10 A | 2026-02-28 A | HAL-E-MS-E-0270 | 100% | 2026-03-14 | 2026-03-15 |  | 03 | 04 |
| HAL-E-MA-E-0020 |  | Main distribution board (MDB) | 5d | 2026-02-15 A | 2026-03-12 A | HAL-E-MS-E-0020 | 100% | 2026-03-02 | 2026-03-08 | Construction Cost | 03 | 04 |
| HAL-E-MA-E-0180 |  | Distribution board for pump room | 5.5d | 2026-02-15 A | 2026-03-12 A | HAL-E-MS-E-0180 | 100% | 2026-03-15 | 2026-03-23 | Construction Cost | 03 | 04 |
| HAL-E-MA-E-190 |  | Lighting panel board | 5d | 2026-02-15 A | 2026-03-12 A | HAL-E-MS-E-190 | 100% | 2026-03-08 | 2026-03-14 | Purchaser; Construction Cost | 03 | 04 |
| HAL-E-MA-E-200 |  | PP-AC panel | 4.12d | 2026-02-15 A | 2026-03-12 A | HAL-E-MS-E-200 | 100% | 2026-03-10 | 2026-03-15 | Purchaser; Construction Cost | 03 | 04 |
| HAL-E-MA-E-0230 |  | CCTV System | 2d | 2026-02-16 A | 2026-02-28 A | HAL-E-MS-E-0230 | 100% | 2026-03-11 | 2026-03-12 |  | 03 | 04 |
| HAL-E-MA-E-0110 |  | Wall mounted, duplex, telephone and data outlet | 3.88d | 2026-03-12 A | 2026-03-12 A | HAL-E-MS-E-0110 | 100% | 2026-04-05 | 2026-04-08 | Construction Cost | 03 | 04 |
| HAL-E-MA-E-0030 |  | Disconnect switches | 3.62d | 2026-03-24 A | 2026-03-29 A | HAL-E-MS-E-0030 | 100% | 2026-04-05 | 2026-04-09 | Construction Cost | 03 | 04 |

| ID | WBS | Activity | Duration | Start | Finish | Predecessors | Complete | Planned start | Planned finish | Resources | Phasing Code Category | Discipline | Remarks |
| --- | --- | --- | --- | --- | --- | --- | --- | --- | --- | --- | --- | --- | --- |
|  | 4 | **EXTERNAL** |  | 2026-03-24 | 2026-08-16 |  |  |  |  |  |  |  |  |
| HAL-E-MA-EX-0010 |  | Asphalt works | 4.38d | 2026-03-24 A | 2026-03-29 A | HAL-E-MS-EX-0010 | 100% | 2026-04-01 | 2026-04-06 | Construction Cost | 03 | 06 |  |
| HAL-E-MA-EX-0040 |  | Road signs | 6.62d | 2026-04-16 A | 2026-06-29 A | HAL-E-MS-EX-0040 | 100% | 2026-04-22 | 2026-04-29 | Construction Cost | 03 | 06 | 1 |
| HAL-E-MA-EX-0020 |  | Concrete parking bumper | 4.62d | 2026-05-31 A | 2026-06-06 A | HAL-E-MS-EX-0020 | 100% | 2026-05-31 | 2026-06-04 | Construction Cost | 03 | 06 |  |
| HAL-E-MA-EX-0060 |  | Interlock tiles | 6.62d | 2026-05-31 A | 2026-06-06 A | HAL-E-MS-EX-0060 | 100% | 2026-05-31 | 2026-06-07 | Construction Cost | 03 | 06 |  |
| HAL-E-MA-EX-0070 |  | Curbstones | 6.62d | 2026-05-31 A | 2026-06-06 A | HAL-E-MS-EX-0070 | 100% | 2026-05-31 | 2026-06-07 | Construction Cost | 03 | 06 |  |
| HAL-E-MA-EX-0030 |  | Road markings | 4.62d | 2026-08-15 A | 2026-08-16 A | HAL-E-MS-EX-0030 | 100% | 2026-08-26 | 2026-08-31 | Construction Cost | 03 | 06 | 1 |
| HAL-E-MA-EX-0080 |  | Gravel bedding | 3.62d | 2026-08-15 A | 2026-08-16 A | HAL-E-MS-EX-0080 | 100% | 2026-08-26 | 2026-08-30 | Construction Cost | 03 | 06 | 1 |
|  | 5 | **ENVIRONMETAL** |  | 2025-12-29 | 2026-01-29 |  |  |  |  |  |  |  |  |
| HAL-E-MA-EN-0080 |  | GRP pipes | 4.12d | 2025-12-29 A | 2025-12-29 A | HAL-E-MS-EN-0080 | 100% | 2026-02-21 | 2026-02-26 | Construction Cost | 03 | 06 |  |
| HAL-E-MA-EN-0010 |  | HDPE pipes for fire system | 5d | 2025-12-30 A | 2026-01-04 A | HAL-E-MS-EN-0010 | 100% | 2026-01-19 | 2026-01-24 | Construction Cost | 03 | 06 |  |
| HAL-E-MA-EN-0030 |  | HDPE pipes for water supply system | 5d | 2025-12-30 A | 2026-01-04 A | HAL-E-MS-EN-0030 | 100% | 2026-01-24 | 2026-01-28 | Construction Cost | 03 | 06 |  |
| HAL-E-MA-EN-0020 |  | Directly buried gate valve for fire system | 5d | 2026-01-24 A | 2026-01-29 A | HAL-E-MS-EN-0020 | 100% | 2026-02-09 | 2026-02-14 | Construction Cost | 03 | 06 |  |
| HAL-E-MA-EN-0040 |  | Directly buried gate valve for water system | 5d | 2026-01-24 A | 2026-01-29 A | HAL-E-MS-EN-0040 | 100% | 2026-02-11 | 2026-02-16 | Construction Cost | 03 | 06 |  |
| HAL-E-MA-EN-0050 |  | Air valve | 5d | 2026-01-24 A | 2026-01-29 A | HAL-E-MS-EN-0050 | 100% | 2026-02-14 | 2026-02-19 | Construction Cost | 03 | 06 |  |
| HAL-E-MA-EN-0060 |  | Washout valve | 4.62d | 2026-01-24 A | 2026-01-29 A | HAL-E-MS-EN-0060 | 100% | 2026-02-16 | 2026-02-21 | Construction Cost | 03 | 06 |  |
| HAL-E-MA-EN-0070 |  | Gate valve | 4.12d | 2026-01-24 A | 2026-01-29 A | HAL-E-MS-EN-0070 | 100% | 2026-02-18 | 2026-02-24 | Construction Cost | 03 | 06 |  |
|  | 3 | **METHOD STATEMENTS** |  | 2025-12-18 | 2026-08-09 |  |  |  |  |  |  |  |  |
|  | 1 | **PREPARATION AND SUBMITTAL** |  | 2025-12-18 | 2026-08-08 |  |  |  |  |  |  |  |  |
| HAL-E-MT-C-0010 |  | Method Statement for Structural Works | 7d | 2025-12-18 A | 2026-06-29 A | HAL-E-MS-C-0010 | 100% | 2026-01-11 | 2026-01-18 | Engineer [112 h] | 03 | 01 | 1 |
| HAL-E-MT-E-0040 |  | Method Statement for Electrical Works | 9d | 2026-01-14 A | 2026-08-08 A | HAL-E-MT-M-0030 | 100% | 2026-03-11 | 2026-03-23 | Engineer [112 h] | 03 | 04 | 1 |
| HAL-E-MT-M-0030 |  | Method Statement for Mechanical Works | 6.12d | 2026-01-28 A | 2026-08-08 A | HAL-E-MT-A-0020 | 100% | 2026-03-04 | 2026-03-11 | Engineer [112 h] | 03 | 03 | 1 |
| HAL-E-MT-A-0020 |  | Method Statement for Architectural Works | 7d | 2026-05-02 A | 2026-08-08 A | HAL-E-MT-C-0010 | 100% | 2026-05-13 | 2026-05-21 | Engineer [112 h] | 03 | 02 | 1 |
| HAL-E-MT-ENV-0060 |  | Method Statement for Environmental Works | 7d | 2026-05-02 A | 2026-06-29 A | HAL-E-MT-EX-0050 | 100% | 2026-06-09 | 2026-06-17 | Engineer [112 h] | 03 | 06 | 1 |
| HAL-E-MT-EX-0050 |  | Method Statement for External Works | 7d | 2026-05-02 A | 2026-08-08 A | HAL-E-MT-E-0040 | 100% | 2026-06-01 | 2026-06-09 | Engineer [112 h] | 03 | 06 | 1 |

| ID | WBS | Activity | Duration | Start | Finish | Predecessors | Complete | Planned start | Planned finish | Resources | Remarks | Phasing Code Category | Discipline | Procurement Lead Category | Procurement Stages |
| --- | --- | --- | --- | --- | --- | --- | --- | --- | --- | --- | --- | --- | --- | --- | --- |
|  | 2 | **REVIEW AND APPROVAL** |  | 2025-12-18 | 2026-08-09 |  |  |  |  |  |  |  |  |  |  |
| HAL-E-MT-C-1010 |  | Method Statement for Structural Works | 10d | 2025-12-18 A | 2026-06-30 A | HAL-E-MT-C-0010 | 100% | 2026-01-19 | 2026-01-29 | Engineer | 1 | 03 | 01 |  |  |
| HAL-E-MT-E-1040 |  | Method Statement for Electrical Works | 10d | 2026-01-14 A | 2026-08-09 A | HAL-E-MT-M-1030, HAL-E-MT-E-0040 | 100% | 2026-04-01 | 2026-04-13 | Engineer | 1 | 03 | 04 |  |  |
| HAL-E-MT-M-1030 |  | Method Statement for Mechanical Works | 10d | 2026-02-01 A | 2026-08-09 A | HAL-E-MT-A-1020, HAL-E-MT-M-0030 | 100% | 2026-03-21 | 2026-04-01 | Engineer | 1 | 03 | 03 |  |  |
| HAL-E-MT-A-1020 |  | Method Statement for Architectural Works | 11.12d | 2026-05-02 A | 2026-08-09 A | HAL-E-MT-C-1010, HAL-E-MT-A-0020 | 100% | 2026-05-21 | 2026-06-07 | Engineer | 1 | 03 | 02 |  |  |
| HAL-E-MT-ENV-1060 |  | Method Statement for Environmental Works | 10d | 2026-05-02 A | 2026-06-30 A | HAL-E-MT-EX-1050, HAL-E-MT-ENV-0060 | 100% | 2026-07-09 | 2026-07-21 | Engineer | 1 | 03 | 06 |  |  |
| HAL-E-MT-EX-1050 |  | Method Statement for External Works | 10d | 2026-05-02 A | 2026-08-09 A | HAL-E-MT-E-1040, HAL-E-MT-EX-0050, HAL-E-MT-ENV-0060 | 100% | 2026-06-28 | 2026-07-09 | Engineer | 1 | 03 | 06 |  |  |
|  | 3 | **STAGING** |  | 2025-12-18 | 2026-08-09 |  |  |  |  |  |  |  |  |  |  |
| HAL-E-MT-C-2010 |  | Method Statement for Structural Works | 1d | 2025-12-18 A | 2026-07-15 A | HAL-E-MT-C-1010 | 100% | 2026-01-31 | 2026-01-31 | Engineer | 1 | 03 | 01 |  |  |
| HAL-E-MT-E-2040 |  | Method Statement for Electrical Works | 1d | 2026-01-14 A | 2026-08-09 A | HAL-E-MT-E-1040, HAL-E-MT-M-2030 | 100% | 2026-04-13 | 2026-04-14 | Engineer | 1 | 03 | 04 |  |  |
| HAL-E-MT-M-2030 |  | Method Statement for Mechanical Works | 1d | 2026-02-01 A | 2026-08-09 A | HAL-E-MT-M-1030, HAL-E-MT-A-2020 | 100% | 2026-04-01 | 2026-04-02 | Engineer | 1 | 03 | 03 |  |  |
| HAL-E-MT-A-2020 |  | Method Statement for Architectural Works | 1d | 2026-05-02 A | 2026-08-09 A | HAL-E-MT-A-1020 | 100% | 2026-06-07 | 2026-06-08 | Engineer | 1 | 03 | 02 |  |  |
| HAL-E-MT-ENV-2060 |  | Method Statement for Environmental Works | 1d | 2026-05-02 A | 2026-07-13 A | HAL-E-MT-ENV-1060, HAL-E-MT-EX-2050 | 100% | 2026-07-21 | 2026-07-22 | Engineer | 1 | 03 | 06 |  |  |
| HAL-E-MT-EX-2050 |  | Method Statement for External Works | 1d | 2026-05-02 A | 2026-08-09 A | HAL-E-MT-EX-1050 | 100% | 2026-07-09 | 2026-07-11 | Engineer | 1 | 03 | 06 |  |  |
|  | 4 | **PROCUREMENT (27%)** |  | 2025-12-15 | 2026-10-15 |  |  |  |  |  |  |  |  |  |  |
|  | 2 | **LONG LEAD MATERIALS** |  | 2025-12-15 | 2026-09-15 |  |  |  |  |  |  |  |  |  |  |
|  | 1 | **ARCHITECTURAL** |  | 2025-12-15 | 2026-07-11 |  |  |  |  |  |  |  |  |  |  |
|  | 1 | **PO ISSUE** |  | 2025-12-15 | 2026-02-24 |  |  |  |  |  |  |  |  |  |  |
| HAL-E-PO-A-1700 |  | PES -Steel Structure | 5d | 2025-12-15 A | 2025-12-15 A | HAL-E-MA-A-1700 | 100% | 2026-01-21 | 2026-01-26 | Purchaser [40 h] |  | 04 | 02 | 01 | 01 |
| HAL-P-PO-A-190 |  | Windows | 4.5d | 2026-02-05 A | 2026-02-05 A | HAL-E-MA-A-0110 | 100% | 2026-03-08 | 2026-03-14 | Purchaser [40 h] |  | 04 | 02 | 01 | 01 |
| HAL-P-PO-A-180 |  | Doors | 5d | 2026-02-24 A | 2026-02-24 A | HAL-E-MA-A-0100 | 100% | 2026-03-01 | 2026-03-07 | Purchaser [40 h] |  | 04 | 02 | 01 | 01 |
|  | 2 | **MANUFACTURING** |  | 2025-12-16 | 2026-07-11 |  |  |  |  |  |  |  |  |  |  |
| HAL-E-MF-A-1700 |  | PES -Steel Structure | 45d | 2025-12-16 A | 2026-05-20 A | HAL-E-PO-A-1700 | 100% | 2026-01-27 | 2026-03-23 | Purchaser |  | 04 | 02 | 01 | 02 |
| HAL-P-MF-A-190 |  | Windows | 80d | 2026-02-05 A | 2026-07-11 A | HAL-P-PO-A-190 | 100% | 2026-03-10 | 2026-06-16 | Loading workers | 1 | 04 | 02 | 01 | 02 |
| HAL-P-MF-A-180 |  | Doors | 91.12d | 2026-02-24 A | 2026-07-11 A | HAL-P-PO-A-180 | 100% | 2026-03-07 | 2026-06-25 | Loading workers | 1 | 04 | 02 | 01 | 02 |

| ID | WBS | Activity | Duration | Start | Finish | Predecessors | Complete | Planned start | Planned finish | Resources | Cost | Actual cost | Remarks | Phasing Code Category | Discipline | Procurement Lead Category | Procurement Stages |
| --- | --- | --- | --- | --- | --- | --- | --- | --- | --- | --- | --- | --- | --- | --- | --- | --- | --- |
|  | 4 | **DELIVERY TO SITE** |  | 2026-03-05 | 2026-07-11 |  |  |  |  |  |  |  |  |  |  |  |  |
| HAL-E-DL-A-1700 |  | PES -Steel Structure | 7d | 2026-03-05 A | 2026-05-21 A | HAL-E-MF-A-1700 | 100% | 2026-03-21 | 2026-03-29 | Purchaser [112 h]; Construction Cost [3424599] | 3,424,599 | 3,424,599 | 0 | 04 | 02 | 01 | 03 |
| HAL-P-DL-A-180 |  | Doors | 7d | 2026-05-13 A | 2026-07-11 A | HAL-P-MF-A-180 | 100% | 2026-07-22 | 2026-07-30 | Unloading workers [112 h]; Construction Cost [313956] | 313,956 | 313,956 | 1 | 04 | 02 | 01 | 03 |
| HAL-P-DL-A-190 |  | Windows | 7d | 2026-07-05 A | 2026-07-11 A | HAL-P-MF-A-190 | 100% | 2026-08-29 | 2026-09-05 | Unloading workers [112 h]; Construction Cost [199260] | 199,260 | 199,260 |  | 04 | 02 | 01 | 03 |
|  | 5 | **STAGING TIME** |  | 2026-03-05 | 2026-07-11 |  |  |  |  |  |  |  |  |  |  |  |  |
| HAL-E-ST-A-1700 |  | PES -Steel Structure | 2d | 2026-03-05 A | 2026-05-21 A | HAL-E-DL-A-1700 | 100% | 2026-05-13 | 2026-05-16 |  |  |  |  | 04 | 02 | 01 | 04 |
| HAL-P-ST-A-180 |  | Doors | 7d | 2026-05-13 A | 2026-07-11 A | HAL-P-DL-A-180 | 100% | 2026-08-02 | 2026-08-10 |  |  |  | 1 | 04 | 02 | 01 | 04 |
| HAL-P-ST-A-190 |  | Windows | 7d | 2026-07-05 A | 2026-07-11 A | HAL-P-DL-A-190 | 100% | 2026-08-30 | 2026-09-06 |  |  |  |  | 04 | 02 | 01 | 04 |
|  | 3 | **ELECTRICAL** |  | 2026-01-29 | 2026-09-15 |  |  |  |  |  |  |  |  |  |  |  |  |
|  | 1 | **PO ISSUE** |  | 2026-01-29 | 2026-03-16 |  |  |  |  |  |  |  |  |  |  |  |  |
| HAL-P-PO-E-200 |  | Suspended High Bay LED lights | 5d | 2026-01-29 A | 2026-01-29 A | HAL-E-MA-E-0060, HAL-P-PO-E-2000 | 100% | 2026-03-08 | 2026-03-14 | Purchaser [40 h] |  |  |  | 04 | 04 | 01 | 01 |
| HAL-P-PO-E-210 |  | Flood lights | 7d | 2026-01-29 A | 2026-01-29 A | HAL-E-MA-E-0070, HAL-P-PO-E-200 | 100% | 2026-03-14 | 2026-03-23 | Purchaser [40 h] |  |  |  | 04 | 04 | 01 | 01 |
| HAL-P-PO-E-220 |  | Recessed mounted LED downlight | 5d | 2026-01-29 A | 2026-01-29 A | HAL-E-MA-E-0080, HAL-P-PO-E-210 | 100% | 2026-03-23 | 2026-03-29 | Purchaser [40 h] |  |  |  | 04 | 04 | 01 | 01 |
| HAL-P-PO-E-230 |  | LED Emergency Lights wall mounted | 5d | 2026-01-29 A | 2026-01-29 A | HAL-E-MA-E-0090, HAL-P-PO-E-220 | 100% | 2026-03-29 | 2026-04-04 | Purchaser [160 h] |  |  |  | 04 | 04 | 01 | 01 |
| HAL-P-PO-E-240 |  | LED Emergency Exit Light | 5d | 2026-01-29 A | 2026-01-29 A | HAL-E-MA-E-0100, HAL-P-PO-E-230 | 100% | 2026-04-04 | 2026-04-09 | Purchaser [160 h] |  |  |  | 04 | 04 | 01 | 01 |
| HAL-P-PO-E-280 |  | Surface mounted lights | 5d | 2026-01-29 A | 2026-01-29 A | HAL-E-MA-E-0190, HAL-P-PO-E-270 | 100% | 2026-04-27 | 2026-05-03 | Purchaser [160 h] |  |  |  | 04 | 04 | 01 | 01 |
| HAL-P-PO-E-0260 |  | Main program system & controller | 5d | 2026-02-04 A | 2026-02-04 A | HAL-E-MA-E-0260 | 100% | 2026-05-25 | 2026-06-02 | Purchaser [160 h] |  |  |  | 04 | 04 | 01 | 01 |
| HAL-P-PO-E-0270 |  | PLC controller | 5d | 2026-02-04 A | 2026-02-04 A | HAL-E-MA-E-0270 | 100% | 2026-05-25 | 2026-06-02 | Purchaser [160 h] |  |  |  | 04 | 04 | 01 | 01 |
| HAL-P-PO-E-260 |  | Street Lighting poles | 5d | 2026-02-09 A | 2026-02-09 A | HAL-E-MA-E-0170, HAL-P-PO-E-250 | 100% | 2026-03-28 | 2026-04-02 | Purchaser [160 h] |  |  |  | 04 | 04 | 01 | 01 |
| HAL-P-PO-E-250 |  | Fire alarm system | 5d | 2026-02-11 A | 2026-02-11 A | HAL-E-MA-E-0130, HAL-P-PO-E-240 | 100% | 2026-04-01 | 2026-04-07 | Purchaser [160 h] |  |  |  | 04 | 04 | 01 | 01 |
| HAL-P-PO-E-0250 |  | Solar system | 5d | 2026-02-19 A | 2026-02-19 A | HAL-E-MA-E-0250 | 100% | 2026-03-01 | 2026-03-07 | Purchaser [160 h] |  |  |  | 04 | 04 | 01 | 01 |
| HAL-P-PO-E-0230 |  | CCTV System | 5d | 2026-03-16 A | 2026-03-16 A | HAL-E-MA-E-0230 | 100% | 2026-05-25 | 2026-06-02 | Purchaser [160 h] |  |  |  | 04 | 04 | 01 | 01 |
| HAL-P-PO-E-0240 |  | Access control system | 5d | 2026-03-16 A | 2026-03-16 A | HAL-E-MA-E-0240 | 100% | 2026-05-25 | 2026-06-02 | Purchaser [160 h] |  |  |  | 04 | 04 | 01 | 01 |
| HAL-P-PO-E-190 |  | Main distribution board (MDB) | 4.12d | 2026-03-16 A | 2026-03-16 A | HAL-E-MA-E-0020 | 100% | 2026-05-25 | 2026-06-02 | Purchaser [40 h] |  |  |  | 04 | 04 | 01 | 01 |
| HAL-P-PO-E-1900 |  | Lighting panel board | 5d | 2026-03-16 A | 2026-03-16 A | HAL-E-MA-E-190, HAL-E-MA-E-190 FF, HAL-P-PO-E-190 | 100% | 2026-06-02 | 2026-06-08 | Purchaser [40 h] |  |  |  | 04 | 04 | 01 | 01 |
| HAL-P-PO-E-2000 |  | PP-AC panel | 5d | 2026-03-16 A | 2026-03-16 A | HAL-E-MA-E-200, HAL-E-MA-E-200 FF, HAL-P-PO-E-1900 | 100% | 2026-06-08 | 2026-06-14 | Purchaser [40 h] |  |  |  | 04 | 04 | 01 | 01 |
| HAL-P-PO-E-270 |  | Distribution board for pump room | 5d | 2026-03-16 A | 2026-03-16 A | HAL-E-MA-E-0180, HAL-P-PO-E-260 | 100% | 2026-06-14 | 2026-06-20 | Purchaser [160 h] |  |  |  | 04 | 04 | 01 | 01 |

| ID | WBS | Activity | Duration | Start | Finish | Predecessors | Complete | Planned start | Planned finish | Resources | Cost | Actual cost | Phasing Code Category | Discipline | Procurement Lead Category | Procurement Stages | Remarks |
| --- | --- | --- | --- | --- | --- | --- | --- | --- | --- | --- | --- | --- | --- | --- | --- | --- | --- |
|  | 2 | **MANUFACTURING** |  | 2026-01-29 | 2026-09-15 |  |  |  |  |  |  |  |  |  |  |  |  |
| HAL-P-MF-E-200 |  | Suspended High Bay LED lights | 92d | 2026-01-29 A | 2026-05-18 A | HAL-P-PO-E-200 | 100% | 2026-03-14 | 2026-07-04 | Loading workers |  |  | 04 | 04 | 01 | 02 |  |
| HAL-P-MF-E-210 |  | Flood lights | 90d | 2026-01-29 A | 2026-05-18 A | HAL-P-PO-E-210 | 100% | 2026-03-23 | 2026-07-09 | Loading workers |  |  | 04 | 04 | 01 | 02 |  |
| HAL-P-MF-E-220 |  | Recessed mounted LED downlight | 90d | 2026-01-29 A | 2026-05-18 A | HAL-P-PO-E-220 | 100% | 2026-03-29 | 2026-07-15 | Loading workers |  |  | 04 | 04 | 01 | 02 |  |
| HAL-P-MF-E-230 |  | LED Emergency Lights wall mounted | 90d | 2026-01-29 A | 2026-05-18 A | HAL-P-PO-E-230 | 100% | 2026-04-04 | 2026-07-21 | Loading workers |  |  | 04 | 04 | 01 | 02 |  |
| HAL-P-MF-E-240 |  | LED Emergency Exit Light | 90d | 2026-01-29 A | 2026-05-18 A | HAL-P-PO-E-240 | 100% | 2026-04-09 | 2026-07-27 | Loading workers |  |  | 04 | 04 | 01 | 02 |  |
| HAL-P-MF-E-280 |  | Surface mounted lights | 90d | 2026-01-29 A | 2026-05-18 A | HAL-P-PO-E-280 | 100% | 2026-05-03 | 2026-08-19 | Loading workers |  |  | 04 | 04 | 01 | 02 |  |
| HAL-P-MF-E-0260 |  | Main program system & controller | 80d | 2026-02-04 A | 2026-07-16 A | HAL-P-PO-E-0260 | 100% | 2026-06-03 | 2026-09-03 |  |  |  | 04 | 04 | 01 | 02 | 1 |
| HAL-P-MF-E-0270 |  | PLC controller | 80d | 2026-02-04 A | 2026-07-12 A | HAL-P-PO-E-0270 | 100% | 2026-06-03 | 2026-09-03 |  |  |  | 04 | 04 | 01 | 02 | 1 |
| HAL-P-MF-E-260 |  | Street Lighting poles | 90d | 2026-02-09 A | 2026-07-21 A | HAL-P-PO-E-260 | 100% | 2026-04-02 | 2026-07-20 | Loading workers |  |  | 04 | 04 | 01 | 02 | 1 |
| HAL-P-MF-E-250 |  | Fire alarm system | 90d | 2026-02-11 A | 2026-05-24 A | HAL-P-PO-E-250 | 100% | 2026-04-07 | 2026-07-25 | Loading workers |  |  | 04 | 04 | 01 | 02 |  |
| HAL-P-MF-E-0250 |  | Solar system | 100d | 2026-02-19 A | 2026-07-04 A | HAL-P-PO-E-0250 | 100% | 2026-03-07 | 2026-07-06 |  |  |  | 04 | 04 | 01 | 02 | 1 |
| HAL-P-MF-E-0230 |  | CCTV System | 90d | 2026-03-16 A | 2026-09-15 A | HAL-P-PO-E-0230 | 100% | 2026-06-03 | 2026-09-15 |  |  |  | 04 | 04 | 01 | 02 | 1 |
| HAL-P-MF-E-0240 |  | Access control system | 60d | 2026-03-16 A | 2026-09-15 A | HAL-P-PO-E-0240 | 100% | 2026-06-03 | 2026-08-11 |  |  |  | 04 | 04 | 01 | 02 | 1 |
| HAL-P-MF-E-190 |  | Main distribution board (MDB) | 91.12d | 2026-03-16 A | 2026-07-13 A | HAL-P-PO-E-190 | 100% | 2026-06-02 | 2026-09-16 | Loading workers |  |  | 04 | 04 | 01 | 02 | 1 |
| HAL-P-MF-E-1900 |  | Lighting panel board | 92d | 2026-03-16 A | 2026-07-13 A | HAL-P-PO-E-1900 | 100% | 2026-06-08 | 2026-09-24 | Purchaser |  |  | 04 | 04 | 01 | 02 | 1 |
| HAL-P-MF-E-2000 |  | PP-AC panel | 90d | 2026-03-16 A | 2026-07-13 A | HAL-P-PO-E-2000 | 100% | 2026-06-14 | 2026-09-28 | Purchaser |  |  | 04 | 04 | 01 | 02 | 1 |
| HAL-P-MF-E-270 |  | Distribution board for pump room | 90d | 2026-03-16 A | 2026-07-13 A | HAL-P-PO-E-270 | 100% | 2026-06-20 | 2026-10-04 | Loading workers |  |  | 04 | 04 | 01 | 02 | 1 |
|  | 3 | **CUSTOM CLEARANCE** |  |  |  |  |  |  |  |  |  |  |  |  |  |  |  |
|  | 4 | **DELIVERY TO SITE** |  | 2026-05-18 | 2026-09-15 |  |  |  |  |  |  |  |  |  |  |  |  |
| HAL-P-DL-E-200 |  | Suspended High Bay LED lights | 7d | 2026-05-18 A | 2026-05-18 A | HAL-P-MF-E-200 | 100% | 2026-10-15 | 2026-10-24 | Unloading workers [112 h]; Construction Cost [50398.2] | 50,398.2 | 50,398.2 | 04 | 04 | 01 | 03 |  |
| HAL-P-DL-E-210 |  | Flood lights | 7d | 2026-05-18 A | 2026-05-18 A | HAL-P-MF-E-210 | 100% | 2026-10-15 | 2026-10-24 | Unloading workers [112 h]; Construction Cost [9234] | 9,234 | 9,234 | 04 | 04 | 01 | 03 |  |
| HAL-P-DL-E-220 |  | Recessed mounted LED downlight | 7d | 2026-05-18 A | 2026-05-18 A | HAL-P-MF-E-220 | 100% | 2026-10-15 | 2026-10-24 | Unloading workers [112 h]; Construction Cost [33048] | 33,048 | 33,048 | 04 | 04 | 01 | 03 |  |
| HAL-P-DL-E-230 |  | LED Emergency Lights wall mounted | 7d | 2026-05-18 A | 2026-05-18 A | HAL-P-MF-E-230 | 100% | 2026-10-15 | 2026-10-24 | Unloading workers [224 h]; Construction Cost [13996.8] | 13,996.8 | 13,996.8 | 04 | 04 | 01 | 03 |  |
| HAL-P-DL-E-240 |  | LED Emergency Exit Light | 7d | 2026-05-18 A | 2026-05-18 A | HAL-P-MF-E-240 | 100% | 2026-10-15 | 2026-10-24 | Unloading workers [224 h]; Construction Cost [4762.8] | 4,762.8 | 4,762.8 | 04 | 04 | 01 | 03 |  |
| HAL-P-DL-E-280 |  | Surface mounted lights | 7d | 2026-05-18 A | 2026-05-18 A | HAL-P-MF-E-280 | 100% | 2026-10-21 | 2026-10-29 | Unloading workers [336 h]; Construction Cost [63617.4] | 63,617.4 | 63,617.4 | 04 | 04 | 01 | 03 |  |
| HAL-P-DL-E-250 |  | Fire alarm system | 7d | 2026-05-24 A | 2026-05-24 A | HAL-P-MF-E-250 | 100% | 2026-09-21 | 2026-09-30 | Unloading workers [336 h]; Construction Cost [68598.9] | 68,598.9 |  | 04 | 04 | 01 | 03 |  |
| HAL-P-DL-E-0250 |  | Solar system | 7d | 2026-07-05 A | 2026-07-05 A | HAL-P-MF-E-0250 | 100% | 2026-07-21 | 2026-07-28 | Construction Cost [534600]; Unloading workers [224 h] | 534,600 | 534,600 | 04 | 04 | 01 | 03 |  |
| HAL-P-DL-E-190 |  | Main distribution board (MDB) | 7d | 2026-07-14 A | 2026-07-14 A | HAL-P-MF-E-190 | 100% | 2026-07-27 | 2026-08-04 | Unloading workers [112 h]; Construction Cost [62208] | 62,208 | 62,208 | 04 | 04 | 01 | 03 |  |
| HAL-P-DL-E-1900 |  | Lighting panel board | 7d | 2026-07-14 A | 2026-07-14 A | HAL-P-MF-E-1900 | 100% | 2026-07-27 | 2026-08-04 | Purchaser [112 h]; Construction Cost [36936] | 36,936 | 36,936 | 04 | 04 | 01 | 03 |  |
| HAL-P-DL-E-2000 |  | PP-AC panel | 7d | 2026-07-14 A | 2026-07-14 A | HAL-P-MF-E-2000 | 100% | 2026-07-27 | 2026-08-03 | Purchaser [112 h]; Construction Cost [44469] | 44,469 | 44,469 | 04 | 04 | 01 | 03 |  |
| HAL-P-DL-E-270 |  | Distribution board for pump room | 7d | 2026-07-14 A | 2026-07-14 A | HAL-P-MF-E-270 | 100% | 2026-07-28 | 2026-08-05 | Unloading workers [224 h]; Construction Cost [2527.2] | 2,527.2 | 2,527.2 | 04 | 04 | 01 | 03 |  |
| HAL-P-DL-E-0260 |  | Main program system & controller | 7d | 2026-07-16 A | 2026-07-16 A | HAL-P-DL-E-0250, HAL-P-MF-E-0260 | 100% | 2026-08-13 | 2026-08-20 | Construction Cost [38880]; Unloading workers [112 h] | 38,880 | 38,880 | 04 | 04 | 01 | 03 |  |
| HAL-P-DL-E-0270 |  | PLC controller | 7d | 2026-07-16 A | 2026-07-16 A | HAL-P-DL-E-0260, HAL-P-MF-E-0270 | 100% | 2026-08-22 | 2026-08-29 | Construction Cost [77760]; Unloading workers [112 h] | 77,760 | 77,760 | 04 | 04 | 01 | 03 |  |
| HAL-P-DL-E-260 |  | Street Lighting poles | 7d | 2026-07-21 A | 2026-07-21 A | HAL-P-MF-E-260 | 100% | 2026-07-29 | 2026-08-06 | Unloading workers [224 h]; Construction Cost [57904.5] | 57,904.47 | 57,904.47 | 04 | 04 | 01 | 03 |  |
| HAL-P-DL-E-0230 |  | CCTV System | 7d | 2026-09-15 A | 2026-09-15 A | HAL-P-MF-E-0230 | 100% | 2026-09-22 | 2026-10-01 | Construction Cost [161571]; Unloading workers [224 h] | 161,570.7 | 161,570.7 | 04 | 04 | 01 | 03 |  |
| HAL-P-DL-E-0240 |  | Access control system | 7d | 2026-09-15 A | 2026-09-15 A | HAL-P-MF-E-0240 | 100% | 2026-09-22 | 2026-10-01 | Construction Cost [59364.9]; Unloading workers [112 h] | 59,364.9 | 59,364.9 | 04 | 04 | 01 | 03 |  |

| ID | WBS | Activity | Duration | Start | Finish | Predecessors | Complete | Planned start | Planned finish | Resources | Phasing Code Category | Discipline | Procurement Lead Category | Procurement Stages | Remarks |
| --- | --- | --- | --- | --- | --- | --- | --- | --- | --- | --- | --- | --- | --- | --- | --- |
|  | 5 | **STAGING TIME** |  | 2026-05-18 | 2026-09-15 |  |  |  |  |  |  |  |  |  |  |
| HAL-P-ST-E-200 |  | Suspended High Bay LED lights | 7d | 2026-05-18 A | 2026-05-18 A | HAL-P-DL-E-200, HAL-P-ST-E-190 | 100% | 2026-11-11 | 2026-11-19 |  | 04 | 04 | 01 | 04 |  |
| HAL-P-ST-E-210 |  | Flood lights | 7d | 2026-05-18 A | 2026-05-18 A | HAL-P-DL-E-210 | 100% | 2026-10-24 | 2026-11-01 |  | 04 | 04 | 01 | 04 |  |
| HAL-P-ST-E-220 |  | Recessed mounted LED downlight | 7d | 2026-05-18 A | 2026-05-18 A | HAL-P-DL-E-220, HAL-P-ST-E-200, HAL-E-ST-E-200, HAL-E-ST-E-190, HAL-P-ST-E-190 | 100% | 2026-11-22 | 2026-11-30 |  | 04 | 04 | 01 | 04 |  |
| HAL-P-ST-E-230 |  | LED Emergency Lights wall mounted | 7d | 2026-05-18 A | 2026-05-18 A | HAL-P-DL-E-230 | 100% | 2026-10-24 | 2026-11-01 |  | 04 | 04 | 01 | 04 |  |
| HAL-P-ST-E-240 |  | LED Emergency Exit Light | 7d | 2026-05-18 A | 2026-05-18 A | HAL-P-DL-E-240 | 100% | 2026-10-24 | 2026-11-01 |  | 04 | 04 | 01 | 04 |  |
| HAL-P-ST-E-280 |  | Surface mounted lights | 7d | 2026-05-18 A | 2026-05-18 A | HAL-P-DL-E-280 | 100% | 2026-10-29 | 2026-11-07 |  | 04 | 04 | 01 | 04 |  |
| HAL-P-ST-E-250 |  | Fire alarm system | 7d | 2026-05-24 A | 2026-05-24 A | HAL-P-DL-E-250 | 100% | 2026-09-30 | 2026-10-08 |  | 04 | 04 | 01 | 04 |  |
| HAL-E-ST-E-0250 |  | Solar system | 7d | 2026-07-05 A | 2026-07-05 A | HAL-P-DL-E-0250 | 100% | 2026-07-29 | 2026-08-05 |  | 04 | 04 | 01 | 04 |  |
| HAL-E-ST-E-190 |  | Lighting panel board | 7d | 2026-07-14 A | 2026-07-14 A | HAL-P-DL-E-1900 | 100% | 2026-08-01 | 2026-08-09 |  | 04 | 04 | 01 | 04 |  |
| HAL-E-ST-E-200 |  | PP-AC panel | 7d | 2026-07-14 A | 2026-07-14 A | HAL-P-DL-E-2000 | 100% | 2026-08-01 | 2026-08-08 |  | 04 | 04 | 01 | 04 |  |
| HAL-P-ST-E-190 |  | Main distribution board (MDB) | 7d | 2026-07-14 A | 2026-07-14 A | HAL-P-DL-E-190 | 100% | 2026-08-01 | 2026-08-09 |  | 04 | 04 | 01 | 04 |  |
| HAL-P-ST-E-270 |  | Distribution board for pump room | 7d | 2026-07-14 A | 2026-07-14 A | HAL-P-DL-E-270, HAL-E-ST-E-0230 | 100% | 2026-08-04 | 2026-08-11 |  | 04 | 04 | 01 | 04 |  |
| HAL-E-ST-E-0260 |  | Main program system & controller | 7d | 2026-07-16 A | 2026-07-16 A | HAL-E-ST-E-0250, HAL-P-DL-E-0260 | 100% | 2026-08-22 | 2026-08-29 |  | 04 | 04 | 01 | 04 |  |
| HAL-E-ST-E-0270 |  | PLC controller | 7d | 2026-07-16 A | 2026-07-16 A | HAL-E-ST-E-0260, HAL-P-DL-E-0270 | 100% | 2026-08-30 | 2026-09-06 |  | 04 | 04 | 01 | 04 |  |
| HAL-P-ST-E-260 |  | Street Lighting poles | 7d | 2026-07-21 A | 2026-07-21 A | HAL-P-DL-E-260, HAL-P-ST-E-240, HAL-P-ST-E-230, HAL-P-ST-E-220, HAL-P-ST-E-210 | 100% | 2026-08-06 | 2026-08-15 |  | 04 | 04 | 01 | 04 |  |
| HAL-E-ST-E-0230 |  | CCTV System | 7d | 2026-09-15 A | 2026-09-15 A | HAL-P-DL-E-0230 | 100% | 2026-10-01 | 2026-10-10 |  | 04 | 04 | 01 | 04 |  |
| HAL-E-ST-E-0240 |  | Access control system | 7d | 2026-09-15 A | 2026-09-15 A | HAL-E-ST-E-0230, HAL-P-DL-E-0240 | 100% | 2026-09-21 | 2026-09-29 |  | 04 | 04 | 01 | 04 |  |
|  | 2 | **MECHANICAL** |  | 2026-01-17 | 2026-08-09 |  |  |  |  |  |  |  |  |  |  |
|  | 1 | **PO ISSUE** |  | 2026-01-17 | 2026-06-28 |  |  |  |  |  |  |  |  |  |  |
| HAL-P-PO-M-410 |  | GRP tank | 7d | 2026-01-17 A | 2026-01-17 A | HAL-E-MA-M-0320, HAL-P-PO-M-400 | 100% | 2026-03-16 | 2026-03-25 | Purchaser [80 h] | 04 | 03 | 01 | 01 |  |
| HAL-P-PO-M-340 |  | Seamless black steel or ERW pipes | 5d | 2026-01-29 A | 2026-01-29 A | HAL-E-MA-M-0020 | 100% | 2026-02-02 | 2026-02-07 | Purchaser [40 h] | 04 | 03 | 01 | 01 |  |
| HAL-P-PO-M-350 |  | Fire hose cabinet | 5d | 2026-01-29 A | 2026-01-29 A | HAL-E-MA-M-0030, HAL-P-PO-M-340 | 100% | 2026-02-09 | 2026-02-14 | Purchaser [40 h] | 04 | 03 | 01 | 01 |  |
| HAL-P-PO-M-380 |  | Fire pumps | 5d | 2026-01-29 A | 2026-01-29 A | HAL-E-MA-M-0250, HAL-P-PO-M-370 | 100% | 2026-03-02 | 2026-03-08 | Purchaser [80 h] | 04 | 03 | 01 | 01 |  |
| HAL-P-PO-M-370 |  | Wall propeller type exhaust fans | 5d | 2026-02-11 A | 2026-02-11 A | HAL-E-MA-M-0210, HAL-P-PO-M-360 | 100% | 2026-02-21 | 2026-02-28 | Purchaser [80 h] | 04 | 03 | 01 | 01 |  |
| HAL-P-PO-M-400 |  | Booster pump | 5d | 2026-02-12 A | 2026-02-12 A | HAL-E-MA-M-0310, HAL-P-PO-M-380 | 100% | 2026-03-04 | 2026-03-10 | Purchaser [80 h] | 04 | 03 | 01 | 01 |  |
| HAL-P-PO-M-360 |  | Western water closet | 5d | 2026-06-28 A | 2026-06-28 A | HAL-E-MA-M-0160, HAL-P-PO-M-350 | 100% | 2026-07-06 | 2026-07-11 | Purchaser [40 h] | 04 | 03 | 01 | 01 | 1 |

| ID | WBS | Activity | Duration | Start | Finish | Predecessors | Complete | Planned start | Planned finish | Resources | Cost | Actual cost | Phasing Code Category | Discipline | Procurement Lead Category | Procurement Stages | Remarks |
| --- | --- | --- | --- | --- | --- | --- | --- | --- | --- | --- | --- | --- | --- | --- | --- | --- | --- |
|  | 2 | **MANUFACTURING** |  | 2026-01-17 | 2026-08-08 |  |  |  |  |  |  |  |  |  |  |  |  |
| HAL-P-MF-M-410 |  | GRP tank | 102d | 2026-01-17 A | 2026-04-19 A | HAL-P-PO-M-410 | 100% | 2026-03-14 | 2026-07-15 | Loading workers |  |  | 04 | 03 | 01 | 02 |  |
| HAL-P-MF-M-340 |  | Seamless black steel or ERW pipes | 141.12d | 2026-01-29 A | 2026-05-13 A | HAL-P-PO-M-340 | 100% | 2026-02-08 | 2026-07-29 | Loading workers |  |  | 04 | 03 | 01 | 02 |  |
| HAL-P-MF-M-350 |  | Fire hose cabinet | 121.12d | 2026-01-29 A | 2026-06-01 A | HAL-P-PO-M-350 | 100% | 2026-02-15 | 2026-07-13 | Loading workers |  |  | 04 | 03 | 01 | 02 |  |
| HAL-P-MF-M-380 |  | Fire pumps | 100d | 2026-01-29 A | 2026-08-08 A | HAL-P-PO-M-380 | 100% | 2026-03-08 | 2026-07-07 | Loading workers |  |  | 04 | 03 | 01 | 02 | 1 |
| HAL-P-MF-M-370 |  | Wall propeller type exhaust fans | 80d | 2026-02-11 A | 2026-06-27 A | HAL-P-PO-M-370 | 100% | 2026-03-01 | 2026-06-06 | Loading workers |  |  | 04 | 03 | 01 | 02 | 1 |
| HAL-P-MF-M-400 |  | Booster pump | 80d | 2026-02-12 A | 2026-08-08 A | HAL-P-PO-M-400 | 100% | 2026-03-10 | 2026-06-16 | Loading workers |  |  | 04 | 03 | 01 | 02 | 1 |
| HAL-P-MF-M-360 |  | Western water closet | 30d | 2026-06-28 A | 2026-07-25 A | HAL-P-PO-M-360 | 100% | 2026-07-12 | 2026-08-15 | Loading workers |  |  | 04 | 03 | 01 | 02 | 1 |
|  | 4 | **DELIVERY TO SITE** |  | 2026-04-20 | 2026-08-09 |  |  |  |  |  |  |  |  |  |  |  |  |
| HAL-P-DL-M-410 |  | GRP tank | 7d | 2026-04-20 A | 2026-04-20 A | HAL-P-MF-M-410 | 100% | 2026-08-12 | 2026-08-19 | Unloading workers [224 h]; Construction Cost [165240] | 165,240 | 165,240 | 04 | 03 | 01 | 03 |  |
| HAL-P-DL-M-340 |  | Seamless black steel or ERW pipes | 7d | 2026-05-13 A | 2026-05-13 A | HAL-P-MF-M-340 | 100% | 2026-09-27 | 2026-10-05 | Unloading workers [224 h]; Construction Cost [147528] | 147,527.73 | 147,527.73 | 04 | 03 | 01 | 03 |  |
| HAL-P-DL-M-350 |  | Fire hose cabinet | 7d | 2026-06-02 A | 2026-06-02 A | HAL-P-MF-M-350 | 100% | 2026-09-15 | 2026-09-24 | Unloading workers [224 h]; Construction Cost [27216] | 27,216 | 27,216 | 04 | 03 | 01 | 03 |  |
| HAL-P-DL-M-370 |  | Wall propeller type exhaust fans | 7d | 2026-06-27 A | 2026-06-27 A | HAL-P-MF-M-370 | 100% | 2026-08-20 | 2026-08-27 | Unloading workers [224 h]; Construction Cost [42525] | 42,525 | 42,525 | 04 | 03 | 01 | 03 |  |
| HAL-P-DL-M-360 |  | Western water closet | 7d | 2026-07-25 A | 2026-07-25 A | HAL-P-MF-M-360, HAL-P-ST-E-280, HAL-P-ST-E-270 | 100% | 2026-08-18 | 2026-08-25 | Unloading workers [336 h]; Construction Cost [39657.6] | 39,657.6 | 39,657.6 | 04 | 03 | 01 | 03 |  |
| HAL-P-DL-M-380 |  | Fire pumps | 7d | 2026-08-09 A | 2026-08-09 A | HAL-P-MF-M-380 | 100% | 2026-08-16 | 2026-08-23 | Unloading workers [336 h]; Construction Cost [145800] | 145,800 | 145,800 | 04 | 03 | 01 | 03 |  |
| HAL-P-DL-M-400 |  | Booster pump | 7d | 2026-08-09 A | 2026-08-09 A | HAL-P-MF-M-400 | 100% | 2026-08-15 | 2026-08-22 | Unloading workers [336 h]; Construction Cost [17010] | 17,010 | 17,010 | 04 | 03 | 01 | 03 |  |
|  | 5 | **STAGING TIME** |  | 2026-04-20 | 2026-08-09 |  |  |  |  |  |  |  |  |  |  |  |  |
| HAL-P-ST-M-410 |  | GRP tank | 7d | 2026-04-20 A | 2026-04-20 A | HAL-P-DL-M-410 | 100% | 2026-08-20 | 2026-08-27 |  |  |  | 04 | 03 | 01 | 04 |  |
| HAL-P-ST-M-340 |  | Seamless black steel or ERW pipes | 7d | 2026-05-13 A | 2026-05-13 A | HAL-P-DL-M-340 | 100% | 2026-10-05 | 2026-10-13 |  |  |  | 04 | 03 | 01 | 04 |  |
| HAL-P-ST-M-350 |  | Fire hose cabinet | 7d | 2026-06-02 A | 2026-06-02 A | HAL-P-DL-M-350 | 100% | 2026-09-24 | 2026-10-03 |  |  |  | 04 | 03 | 01 | 04 |  |
| HAL-P-ST-M-370 |  | Wall propeller type exhaust fans | 7d | 2026-06-27 A | 2026-06-27 A | HAL-P-DL-M-370 | 100% | 2026-08-29 | 2026-09-05 |  |  |  | 04 | 03 | 01 | 04 |  |
| HAL-P-ST-M-360 |  | Western water closet | 7d | 2026-07-25 A | 2026-07-25 A | HAL-P-DL-M-360, HAL-P-ST-M-380, HAL-P-ST-M-400 | 100% | 2026-08-26 | 2026-09-02 |  |  |  | 04 | 03 | 01 | 04 |  |
| HAL-P-ST-M-380 |  | Fire pumps | 7d | 2026-08-09 A | 2026-08-09 A | HAL-P-DL-M-380 | 100% | 2026-08-24 | 2026-08-31 |  |  |  | 04 | 03 | 01 | 04 |  |
| HAL-P-ST-M-400 |  | Booster pump | 7d | 2026-08-09 A | 2026-08-09 A | HAL-P-DL-M-400, HAL-P-ST-M-370 | 100% | 2026-08-23 | 2026-08-30 |  |  |  | 04 | 03 | 01 | 04 |  |

| ID | WBS | Activity | Duration | Start | Finish | Predecessors | Complete | Planned start | Planned finish | Resources | Cost | Actual cost | Phasing Code Category | Discipline | Procurement Lead Category | Procurement Stages |
| --- | --- | --- | --- | --- | --- | --- | --- | --- | --- | --- | --- | --- | --- | --- | --- | --- |
|  | 1 | **SHORT LEAD MATERIALS** |  | 2025-12-15 | 2026-10-15 |  |  |  |  |  |  |  |  |  |  |  |
|  | 6 | **STRUCTURAL** |  | 2025-12-24 | 2026-02-21 |  |  |  |  |  |  |  |  |  |  |  |
|  | 1 | **PO ISSUE** |  | 2025-12-24 | 2026-01-20 |  |  |  |  |  |  |  |  |  |  |  |
| HAL-P-PO-C-60 |  | Concrete mix | 2d | 2025-12-24 A | 2025-12-24 A | HAL-E-MA-C-0020 | 100% | 2026-01-15 | 2026-01-17 | Purchaser [32 h] |  |  | 04 | 01 | 02 | 01 |
| HAL-P-PO-C-70 |  | Polyethylene sheet | 2d | 2026-01-03 A | 2026-01-03 A | HAL-E-MA-C-0030 | 100% | 2026-01-14 | 2026-01-15 | Purchaser [32 h] |  |  | 04 | 01 | 02 | 01 |
| HAL-P-PO-C-50 |  | Anti termite | 2d | 2026-01-06 A | 2026-01-06 A | HAL-E-MA-C-0010 | 100% | 2026-01-20 | 2026-01-21 | Purchaser [32 h] |  |  | 04 | 01 | 02 | 01 |
| HAL-P-PO-C-90 |  | Rebar | 2d | 2026-01-17 A | 2026-01-17 A | HAL-E-MA-C-0050 | 100% | 2026-01-26 | 2026-01-27 | Purchaser [32 h] |  |  | 04 | 01 | 02 | 01 |
| HAL-P-PO-C-80 |  | Bitumen paint | 2d | 2026-01-20 A | 2026-01-20 A | HAL-E-MA-C-0040 | 100% | 2026-01-26 | 2026-01-27 | Purchaser [32 h] |  |  | 04 | 01 | 02 | 01 |
|  | 4 | **MANUFACTURING** |  | 2025-12-25 | 2026-02-18 |  |  |  |  |  |  |  |  |  |  |  |
| HAL-P-MF-C-60 |  | Concrete mix | 2d | 2025-12-25 A | 2026-02-18 A | HAL-P-PO-C-60 | 100% | 2026-01-18 | 2026-01-19 | Loading workers |  |  | 04 | 01 | 02 | 02 |
| HAL-P-MF-C-70 |  | Polyethylene sheet | 2d | 2026-01-04 A | 2026-02-05 A | HAL-P-PO-C-70 SS | 100% | 2026-01-14 | 2026-01-15 | Loading workers |  |  | 04 | 01 | 02 | 02 |
| HAL-P-MF-C-50 |  | Anti termite | 2d | 2026-01-07 A | 2026-02-18 A | HAL-P-PO-C-50 | 100% | 2026-01-22 | 2026-01-24 | Loading workers |  |  | 04 | 01 | 02 | 02 |
| HAL-P-MF-C-90 |  | Rebar | 2d | 2026-01-18 A | 2026-02-18 A | HAL-P-PO-C-90 | 100% | 2026-01-28 | 2026-01-29 | Loading workers |  |  | 04 | 01 | 02 | 02 |
| HAL-P-MF-C-80 |  | Bitumen paint | 2d | 2026-01-21 A | 2026-01-27 A | HAL-P-PO-C-80 | 100% | 2026-01-28 | 2026-01-29 | Loading workers |  |  | 04 | 01 | 02 | 02 |
|  | 2 | **DELIVERY** |  | 2026-01-05 | 2026-02-21 |  |  |  |  |  |  |  |  |  |  |  |
| HAL-P-DL-C-70 |  | Polyethylene sheet | 2d | 2026-01-05 A | 2026-02-07 A | HAL-P-MF-C-70 | 100% | 2026-01-17 | 2026-01-18 | Unloading workers [32 h]; Construction Cost [44165.2] | 44,165.25 | 44,165.25 | 04 | 01 | 02 | 03 |
| HAL-P-DL-C-50 |  | Anti termite | 2d | 2026-01-11 A | 2026-02-19 A | HAL-P-MF-C-50 | 100% | 2026-01-25 | 2026-01-26 | Unloading workers [32 h]; Construction Cost [61831.3] | 61,831.35 | 61,831.35 | 04 | 01 | 02 | 03 |
| HAL-P-DL-C-60 |  | Concrete mix -1 | 2d | 2026-01-11 A | 2026-02-07 A | HAL-P-MF-C-60 | 100% | 2026-01-15 | 2026-01-18 | Unloading workers [32 h]; Construction Cost [198747] | 198,747.47 | 198,747.47 | 04 | 01 | 02 | 03 |
| HAL-P-DL-C-90 |  | Rebar-1 | 2d | 2026-01-18 A | 2026-02-07 A | HAL-P-MF-C-90 | 100% | 2026-01-31 | 2026-02-01 | Unloading workers [32 h]; Construction Cost [248121] | 248,121.21 | 248,121.21 | 04 | 01 | 02 | 03 |
| HAL-P-DL-C-80 |  | Bitumen paint | 2d | 2026-01-28 A | 2026-01-28 A | HAL-P-MF-C-80 | 100% | 2026-02-10 | 2026-02-11 | Unloading workers [32 h]; Construction Cost [40562.8] | 40,562.78 | 40,562.78 | 04 | 01 | 02 | 03 |
| HAL-P-DL-C-120 |  | Rebar-2 | 2d | 2026-02-07 A | 2026-02-08 A | HAL-P-DL-C-90, HAL-P-DL-C-100 | 100% | 2026-03-01 | 2026-03-03 | Unloading workers [32 h]; Construction Cost [400000] | 400,000 | 400,000 | 04 | 01 | 02 | 03 |
| HAL-P-DL-C-100 |  | Concrete mix -2 | 2d | 2026-02-10 A | 2026-02-10 A | HAL-P-DL-C-60, HAL-P-PO-E-190 | 100% | 2026-03-03 | 2026-03-05 | Unloading workers [32 h]; Construction Cost [250000] | 250,000 | 250,000 | 04 | 01 | 02 | 03 |
| HAL-P-DL-C-130 |  | Rebar-3 | 2d | 2026-02-10 A | 2026-02-21 A | HAL-P-DL-C-120 | 100% | 2026-03-03 | 2026-03-05 | Unloading workers [32 h]; Construction Cost [400000] | 400,000 | 400,000 | 04 | 01 | 02 | 03 |
| HAL-P-DL-C-110 |  | Concrete mix -3 | 2d | 2026-02-19 A | 2026-02-21 A | HAL-P-DL-C-100 | 100% | 2026-03-12 | 2026-03-15 | Unloading workers [32 h]; Construction Cost [250000] | 250,000 | 250,000 | 04 | 01 | 02 | 03 |

| ID | WBS | Activity | Duration | Start | Finish | Predecessors | Complete | Planned start | Planned finish | Resources | Phasing Code Category | Discipline | Procurement Lead Category | Procurement Stages | Remarks |
| --- | --- | --- | --- | --- | --- | --- | --- | --- | --- | --- | --- | --- | --- | --- | --- |
|  | 3 | **STAGING TIME** |  | 2026-01-05 | 2026-02-21 |  |  |  |  |  |  |  |  |  |  |
| HAL-P-ST-C-70 |  | Polyethylene sheet | 1d | 2026-01-05 A | 2026-02-07 A | HAL-P-DL-C-70 | 100% | 2026-01-28 | 2026-01-28 |  | 04 | 01 | 02 | 04 |  |
| HAL-P-ST-C-50 |  | Anti termite | 1d | 2026-01-11 A | 2026-02-19 A | HAL-P-DL-C-50 | 100% | 2026-01-28 | 2026-01-29 |  | 04 | 01 | 02 | 04 |  |
| HAL-P-ST-C-60 |  | Concrete mix | 1d | 2026-01-11 A | 2026-02-21 A | HAL-P-DL-C-60 | 100% | 2026-01-28 | 2026-01-29 |  | 04 | 01 | 02 | 04 |  |
| HAL-P-ST-C-90 |  | Rebar | 1d | 2026-01-18 A | 2026-02-21 A | HAL-P-DL-C-90 | 100% | 2026-02-02 | 2026-02-02 |  | 04 | 01 | 02 | 04 |  |
| HAL-P-ST-C-80 |  | Bitumen paint | 1d | 2026-01-28 A | 2026-01-28 A | HAL-P-DL-C-80 | 100% | 2026-02-12 | 2026-02-12 |  | 04 | 01 | 02 | 04 |  |
|  | 1 | **ARCHITECTURAL** |  | 2025-12-15 | 2026-10-01 |  |  |  |  |  |  |  |  |  |  |
|  | 1 | **PO ISSUE** |  | 2025-12-15 | 2026-09-22 |  |  |  |  |  |  |  |  |  |  |
| HAL-P-PO-A-210 |  | Steel ladder | 5d | 2025-12-15 A | 2025-12-15 A | HAL-E-MA-A-0030, HAL-P-PO-A-200 | 100% | 2026-02-11 | 2026-02-16 | Purchaser [40 h] | 04 | 02 | 02 | 01 |  |
| HAL-P-PO-A-230 |  | Steel rails | 5d | 2025-12-15 A | 2025-12-15 A | HAL-E-MA-A-0050, HAL-P-PO-A-220 | 100% | 2026-06-15 | 2026-06-21 | Purchaser [40 h] | 04 | 02 | 02 | 01 |  |
| HAL-P-PO-A-1720 |  | Aluminum Composite Panel | 5d | 2026-02-05 A | 2026-02-05 A | HAL-E-MA-A-1720, HAL-E-MA-A-1720 FF, HAL-P-PO-A-330 | 100% | 2026-07-09 | 2026-07-14 | Purchaser [40 h] | 04 | 02 | 02 | 01 |  |
| HAL-P-PO-A-200 |  | Concrete masonry unit (CMU) | 5d | 2026-05-18 A | 2026-05-18 A | HAL-E-MA-A-0020 | 100% | 2026-05-25 | 2026-06-02 | Purchaser [40 h] | 04 | 02 | 02 | 01 |  |
| HAL-P-PO-A-220 |  | Steel gratings | 4.12d | 2026-06-04 A | 2026-06-04 A | HAL-E-MA-A-0040, HAL-P-PO-A-210 | 100% | 2026-06-22 | 2026-06-27 | Purchaser [40 h] | 04 | 02 | 02 | 01 | 1 |
| HAL-P-PO-A-280 |  | Ceramic tiles | 5d | 2026-06-22 A | 2026-06-22 A | HAL-E-MA-A-0120 | 100% | 2026-06-29 | 2026-07-04 | Purchaser [40 h] | 04 | 02 | 02 | 01 | 1 |
| HAL-P-PO-A-290 |  | Granite strip | 5d | 2026-06-22 A | 2026-06-22 A | HAL-E-MA-A-0130, HAL-P-PO-A-280 | 100% | 2026-07-23 | 2026-07-28 | Purchaser [80 h] | 04 | 02 | 02 | 01 | 1 |
| HAL-P-PO-A-310 |  | Epoxy paint | 5d | 2026-06-22 A | 2026-06-22 A | HAL-E-MA-A-0150 | 100% | 2026-07-23 | 2026-07-28 | Purchaser [40 h] | 04 | 02 | 02 | 01 | 1 |
| HAL-P-PO-A-320 |  | Internl paint | 5d | 2026-06-22 A | 2026-06-22 A | HAL-E-MA-A-0160, HAL-P-PO-A-310 | 100% | 2026-07-29 | 2026-08-03 | Purchaser [40 h] | 04 | 02 | 02 | 01 | 1 |
| HAL-P-PO-A-330 |  | Gypsum board | 5d | 2026-08-13 A | 2026-08-13 A | HAL-E-MA-A-0170, HAL-P-PO-A-320 | 100% | 2026-08-24 | 2026-08-29 | Purchaser [40 h] | 04 | 02 | 02 | 01 | 1 |
| HAL-E-PO-A-1750 |  | Steel fence and gates | 5d | 2026-09-22 A | 2026-09-22 A | HAL-E-MA-A-1750, HAL-E-MA-A-1750 FF | 100% | 2026-09-28 | 2026-10-03 | Purchaser [40 h] | 04 | 02 | 02 | 01 | 1 |
| HAL-P-PO-A-1760 |  | Identification sign; ID01 & ID02 | 5d | 2026-09-22 A | 2026-09-22 A | HAL-E-MA-A-1760, HAL-E-MA-A-1760 FF, HAL-E-PO-A-1750, HAL-P-DL-C-130, HAL-P-DL-C-110 | 100% | 2026-10-04 | 2026-10-08 | Purchaser [40 h] | 04 | 02 | 02 | 01 | 1 |
|  | 4 | **MANUFACTURING** |  | 2025-12-15 | 2026-10-01 |  |  |  |  |  |  |  |  |  |  |
| HAL-P-MF-A-210 |  | Steel ladder | 81.12d | 2025-12-15 A | 2026-05-21 A | HAL-P-PO-A-210 | 100% | 2026-02-17 | 2026-05-30 | Loading workers | 04 | 02 | 02 | 02 |  |
| HAL-P-MF-A-230 |  | Steel rails | 80d | 2025-12-15 A | 2026-05-21 A | HAL-P-PO-A-230 | 100% | 2026-06-21 | 2026-09-22 | Loading workers | 04 | 02 | 02 | 02 |  |
| HAL-P-MF-A-1720 |  | Aluminum Composite Panel | 20d | 2026-02-05 A | 2026-07-11 A | HAL-P-PO-A-1720 | 100% | 2026-07-15 | 2026-08-06 | Purchaser | 04 | 02 | 02 | 02 |  |
| HAL-P-MF-A-200 |  | Concrete masonry unit (CMU) | 71.12d | 2026-05-18 A | 2026-05-20 A | HAL-P-PO-A-200 | 100% | 2026-06-03 | 2026-08-25 | Loading workers | 04 | 02 | 02 | 02 |  |
| HAL-P-MF-A-220 |  | Steel gratings | 20d | 2026-06-04 A | 2026-09-14 A | HAL-P-PO-A-220 | 100% | 2026-06-27 | 2026-07-20 | Loading workers | 04 | 02 | 02 | 02 | 1 |
| HAL-P-MF-A-280 |  | Ceramic tiles | 20d | 2026-06-22 A | 2026-06-24 A | HAL-P-PO-A-280 | 100% | 2026-07-05 | 2026-07-27 | Loading workers | 04 | 02 | 02 | 02 | 1 |
| HAL-P-MF-A-290 |  | Granite strip | 20d | 2026-06-22 A | 2026-06-24 A | HAL-P-PO-A-290 | 100% | 2026-07-29 | 2026-08-20 | Loading workers | 04 | 02 | 02 | 02 | 1 |
| HAL-P-MF-A-310 |  | Epoxy paint | 20d | 2026-06-27 A | 2026-07-18 A | HAL-P-PO-A-310 | 100% | 2026-07-29 | 2026-08-20 | Loading workers | 04 | 02 | 02 | 02 | 1 |
| HAL-P-MF-A-320 |  | Internl paint | 20d | 2026-06-27 A | 2026-07-18 A | HAL-P-PO-A-320 | 100% | 2026-07-11 | 2026-08-02 | Loading workers | 04 | 02 | 02 | 02 | 1 |
| HAL-P-MF-A-330 |  | Gypsum board | 10d | 2026-08-13 A | 2026-08-16 A | HAL-P-PO-A-330 | 100% | 2026-08-30 | 2026-09-09 | Loading workers | 04 | 02 | 02 | 02 |  |
| HAL-E-MF-A-1750 |  | Steel fence and gates | 5d | 2026-09-22 A | 2026-10-01 A | HAL-E-PO-A-1750 | 100% | 2026-10-04 | 2026-10-08 | Purchaser | 04 | 02 | 02 | 02 | 1 |
| HAL-P-MF-A-1760 |  | Identification sign; ID01 & ID02 | 5d | 2026-09-22 A | 2026-10-01 A | HAL-P-PO-A-1760 | 100% | 2026-10-10 | 2026-10-14 | Purchaser | 04 | 02 | 02 | 02 | 1 |

| ID | WBS | Activity | Duration | Start | Finish | Predecessors | Complete | Planned start | Planned finish | Resources | Cost | Actual cost | Phasing Code Category | Discipline | Procurement Lead Category | Procurement Stages |
| --- | --- | --- | --- | --- | --- | --- | --- | --- | --- | --- | --- | --- | --- | --- | --- | --- |
|  | 2 | **DELIVERY** |  | 2026-05-21 | 2026-10-01 |  |  |  |  |  |  |  |  |  |  |  |
| HAL-P-DL-A-200 |  | Concrete masonry unit (CMU) | 7d | 2026-05-21 A | 2026-05-21 A | HAL-P-MF-A-200 | 100% | 2026-08-25 | 2026-09-02 | Unloading workers [896 h]; Construction Cost [141523] | 141,523.2 |  | 04 | 02 | 02 | 03 |
| HAL-P-DL-A-210 |  | Steel ladder | 7d | 2026-05-21 A | 2026-05-21 A | HAL-P-MF-A-210 | 100% | 2026-07-18 | 2026-07-26 | Unloading workers [112 h]; Construction Cost [20898] | 20,898 |  | 04 | 02 | 02 | 03 |
| HAL-P-DL-A-230 |  | Steel rails | 7d | 2026-05-21 A | 2026-05-21 A | HAL-P-MF-A-230 | 100% | 2026-09-22 | 2026-10-01 | Unloading workers [224 h]; Construction Cost [16475.4] | 16,475.4 | 16,475.4 | 04 | 02 | 02 | 03 |
| HAL-P-DL-A-280 |  | Ceramic tiles | 7d | 2026-06-24 A | 2026-06-24 A | HAL-P-MF-A-280 | 100% | 2026-07-28 | 2026-08-04 | Unloading workers [224 h]; Construction Cost [161978] | 161,977.73 | 161,977.73 | 04 | 02 | 02 | 03 |
| HAL-P-DL-A-290 |  | Granite strip | 7d | 2026-06-24 A | 2026-06-24 A | HAL-P-MF-A-290 | 100% | 2026-08-22 | 2026-08-29 | Unloading workers [224 h]; Construction Cost [3195.45] | 3,195.45 | 3,195.45 | 04 | 02 | 02 | 03 |
| HAL-P-DL-A-1720 |  | Aluminum Composite Panel | 7d | 2026-07-05 A | 2026-07-11 A | HAL-P-MF-A-1720 | 100% | 2026-07-26 | 2026-08-02 | Purchaser [224 h]; Construction Cost [386006] | 386,005.5 | 386,005.5 | 04 | 02 | 02 | 03 |
| HAL-P-DL-A-310 |  | Epoxy paint | 7d | 2026-07-18 A | 2026-07-18 A | HAL-P-MF-A-310 | 100% | 2026-08-22 | 2026-08-29 | Unloading workers [224 h]; Construction Cost [225261] | 225,261 | 225,261 | 04 | 02 | 02 | 03 |
| HAL-P-DL-A-320 |  | Internl paint | 7d | 2026-07-18 A | 2026-07-18 A | HAL-P-MF-A-320 | 100% | 2026-08-03 | 2026-08-10 | Unloading workers [224 h]; Construction Cost [58556.9] | 58,556.93 | 58,556.93 | 04 | 02 | 02 | 03 |
| HAL-P-DL-A-330 |  | Gypsum board | 7d | 2026-08-16 A | 2026-08-16 A | HAL-P-MF-A-330 | 100% | 2026-09-10 | 2026-09-17 | Unloading workers [224 h]; Construction Cost [98111.2] | 98,111.25 | 98,111.25 | 04 | 02 | 02 | 03 |
| HAL-P-DL-A-220 |  | Steel gratings | 7d | 2026-09-15 A | 2026-09-15 A | HAL-P-MF-A-220 | 100% | 2026-09-22 | 2026-09-30 | Unloading workers [224 h]; Construction Cost [13705.2] | 13,705.2 | 13,705.2 | 04 | 02 | 02 | 03 |
| HAL-P-DL-A-1750 |  | Steel fence and gates | 7d | 2026-10-01 A | 2026-10-01 A | HAL-E-MF-A-1750 | 100% | 2026-10-11 | 2026-10-18 | Purchaser [224 h]; Construction Cost [4945.05] | 4,945.05 | 4,945.05 | 04 | 02 | 02 | 03 |
| HAL-P-DL-A-1760 |  | Identification sign; ID01 & ID02 | 1d | 2026-10-01 A | 2026-10-01 A | HAL-P-MF-A-1760 | 100% | 2026-10-11 | 2026-10-11 | Purchaser [224 h]; Construction Cost [20412] | 20,412 | 20,412 | 04 | 02 | 02 | 03 |
|  | 3 | **STAGING TIME** |  | 2026-05-21 | 2026-10-01 |  |  |  |  |  |  |  |  |  |  |  |
| HAL-P-ST-A-200 |  | Concrete masonry unit (CMU) | 7d | 2026-05-21 A | 2026-05-21 A | HAL-P-DL-A-200 | 100% | 2026-09-02 | 2026-09-10 |  |  |  | 04 | 02 | 02 | 04 |
| HAL-P-ST-A-210 |  | Steel ladder | 7d | 2026-05-21 A | 2026-05-21 A | HAL-P-DL-A-210 | 100% | 2026-07-26 | 2026-08-03 |  |  |  | 04 | 02 | 02 | 04 |
| HAL-P-ST-A-230 |  | Steel rails | 7d | 2026-05-21 A | 2026-05-21 A | HAL-P-DL-A-230 | 100% | 2026-10-01 | 2026-10-10 |  |  |  | 04 | 02 | 02 | 04 |
| HAL-P-ST-A-280 |  | Ceramic tiles | 7d | 2026-06-24 A | 2026-06-24 A | HAL-P-DL-A-280 | 100% | 2026-08-05 | 2026-08-12 |  |  |  | 04 | 02 | 02 | 04 |
| HAL-P-ST-A-290 |  | Granite strip | 7d | 2026-06-24 A | 2026-06-24 A | HAL-P-DL-A-290 | 100% | 2026-08-30 | 2026-09-06 |  |  |  | 04 | 02 | 02 | 04 |
| HAL-P-ST-A-1720 |  | Aluminum Composite Panel | 7d | 2026-07-05 A | 2026-07-11 A | HAL-P-DL-A-1720 | 100% | 2026-08-03 | 2026-08-10 |  |  |  | 04 | 02 | 02 | 04 |
| HAL-P-ST-A-310 |  | Epoxy paint | 7d | 2026-07-18 A | 2026-07-18 A | HAL-P-DL-A-310, HAL-P-ST-A-210 | 100% | 2026-08-30 | 2026-09-06 |  |  |  | 04 | 02 | 02 | 04 |
| HAL-P-ST-A-320 |  | Internl paint | 7d | 2026-07-18 A | 2026-07-18 A | HAL-P-DL-A-320 | 100% | 2026-08-11 | 2026-08-18 |  |  |  | 04 | 02 | 02 | 04 |
| HAL-P-ST-A-330 |  | Gypsum board | 7d | 2026-08-16 A | 2026-08-16 A | HAL-P-DL-A-330, HAL-P-ST-A-290, HAL-P-ST-A-230, HAL-P-ST-A-220 | 100% | 2026-09-19 | 2026-09-27 |  |  |  | 04 | 02 | 02 | 04 |
| HAL-P-ST-A-220 |  | Steel gratings | 1d | 2026-09-15 A | 2026-09-15 A | HAL-P-DL-A-220 | 100% | 2026-10-01 | 2026-10-01 |  |  |  | 04 | 02 | 02 | 04 |
| HAL-E-ST-A-1750 |  | Steel fence and gates | 1d | 2026-10-01 A | 2026-10-01 A | HAL-P-DL-A-1750 | 100% | 2026-10-19 | 2026-10-19 |  |  |  | 04 | 02 | 02 | 04 |
| HAL-P-ST-A-1760 |  | Identification sign; ID01 & ID02 | 1d | 2026-10-01 A | 2026-10-01 A | HAL-P-DL-A-1760, HAL-P-ST-A-320, HAL-P-ST-A-310, HAL-P-ST-A-280 | 100% | 2026-10-12 | 2026-10-12 |  |  |  | 04 | 02 | 02 | 04 |

| ID | WBS | Activity | Duration | Start | Finish | Predecessors | Complete | Planned start | Planned finish | Resources | Phasing Code Category | Discipline | Procurement Lead Category | Procurement Stages | Remarks |
| --- | --- | --- | --- | --- | --- | --- | --- | --- | --- | --- | --- | --- | --- | --- | --- |
|  | 2 | **MECHANICAL** |  | 2026-01-29 | 2026-09-15 |  |  |  |  |  |  |  |  |  |  |
|  | 1 | **PO ISSUE** |  | 2026-01-29 | 2026-06-28 |  |  |  |  |  |  |  |  |  |  |
| HAL-P-PO-M-390 |  | Fire fighting valves | 5d | 2026-01-29 A | 2026-01-29 A | HAL-E-MA-M-0270, HAL-P-PO-M-590 | 100% | 2026-04-07 | 2026-04-13 | Purchaser [640 h] | 04 | 03 | 02 | 01 |  |
| HAL-P-PO-M-440 |  | Automatic air release valve | 5d | 2026-01-29 A | 2026-01-29 A | HAL-E-MA-M-0040, HAL-P-PO-M-660 | 100% | 2026-03-21 | 2026-03-26 | Purchaser [40 h] | 04 | 03 | 02 | 01 |  |
| HAL-P-PO-M-450 |  | OS & Y gate valve | 5d | 2026-01-29 A | 2026-01-29 A | HAL-E-MA-M-0050, HAL-P-PO-M-440 | 100% | 2026-03-26 | 2026-04-01 | Purchaser [4.44 h] | 04 | 03 | 02 | 01 |  |
| HAL-P-PO-M-460 |  | Fire alarm check valve | 5d | 2026-01-29 A | 2026-01-29 A | HAL-E-MA-M-0060, HAL-P-PO-M-450 | 100% | 2026-04-01 | 2026-04-07 | Purchaser [80 h] | 04 | 03 | 02 | 01 |  |
| HAL-P-PO-M-590 |  | Inline exhaust fans | 5d | 2026-02-11 A | 2026-02-11 A | HAL-E-MA-M-0200, HAL-P-PO-M-580 | 100% | 2026-04-13 | 2026-04-19 | Purchaser [640 h] | 04 | 03 | 02 | 01 |  |
| HAL-P-PO-M-430 |  | U/G HDPE pipes | 5d | 2026-02-24 A | 2026-02-24 A | HAL-E-MA-M-0010, HAL-P-PO-M-620 | 100% | 2026-04-08 | 2026-04-14 | Purchaser [40 h] | 04 | 03 | 02 | 01 |  |
| HAL-P-PO-M-510 |  | UPVC pipes | 4.12d | 2026-02-24 A | 2026-02-24 A | HAL-E-MA-M-0110, HAL-P-PO-M-500 | 100% | 2026-03-10 | 2026-03-15 | Purchaser [40 h] | 04 | 03 | 02 | 01 |  |
| HAL-P-PO-M-540 |  | Gully trap | 5d | 2026-02-24 A | 2026-02-24 A | HAL-E-MA-M-0140, HAL-P-PO-M-530 | 100% | 2026-04-09 | 2026-04-14 | Purchaser [80 h] | 04 | 03 | 02 | 01 |  |
| HAL-P-PO-M-660 |  | Warning tapes | 5d | 2026-03-29 A | 2026-03-29 A | HAL-E-MA-M-0340, HAL-P-PO-M-430 | 100% | 2026-06-15 | 2026-06-20 | Purchaser [40 h] | 04 | 03 | 02 | 01 |  |
| HAL-P-PO-M-530 |  | Floor drain | 5d | 2026-04-06 A | 2026-04-06 A | HAL-E-MA-M-0130, HAL-P-PO-M-520 | 100% | 2026-07-02 | 2026-07-07 | Purchaser [80 h] | 04 | 03 | 02 | 01 |  |
| HAL-P-PO-M-420 |  | Water supply valves | 4.25d | 2026-05-02 A | 2026-05-02 A | HAL-E-MA-M-0330 | 100% | 2026-05-11 | 2026-05-16 | Purchaser [80 h] | 04 | 03 | 02 | 01 |  |
| HAL-P-PO-M-480 |  | PPR pipes | 5d | 2026-05-02 A | 2026-05-02 A | HAL-E-MA-M-0080 | 100% | 2026-05-11 | 2026-05-16 | Purchaser [40 h] | 04 | 03 | 02 | 01 |  |
| HAL-P-PO-M-600 |  | HVAC duct | 5d | 2026-06-13 A | 2026-06-13 A | HAL-E-MA-M-0220, HAL-P-PO-M-480 | 100% | 2026-06-15 | 2026-06-20 | Purchaser [40 h] | 04 | 03 | 02 | 01 |  |
| HAL-P-PO-M-610 |  | Flexible duct | 4.12d | 2026-06-13 A | 2026-06-13 A | HAL-E-MA-M-0230, HAL-P-PO-M-600 | 100% | 2026-06-21 | 2026-06-25 | Purchaser [40 h] | 04 | 03 | 02 | 01 |  |
| HAL-P-PO-M-620 |  | Exhaust diffuser | 5d | 2026-06-13 A | 2026-06-13 A | HAL-E-MA-M-0240, HAL-P-PO-M-610 | 100% | 2026-06-25 | 2026-07-01 | Purchaser [80 h] | 04 | 03 | 02 | 01 |  |
| HAL-P-PO-M-3410 |  | Water tap | 5d | 2026-06-28 A | 2026-06-28 A | HAL-E-MA-M-3410, HAL-E-MA-M-3410 FF | 100% | 2026-07-27 | 2026-08-01 | Purchaser [80 h] | 04 | 03 | 02 | 01 | 1 |
| HAL-P-PO-M-490 |  | Ball valve | 5d | 2026-06-28 A | 2026-06-28 A | HAL-E-MA-M-0090 | 100% | 2026-07-27 | 2026-08-01 | Purchaser [40 h] | 04 | 03 | 02 | 01 | 1 |
| HAL-P-PO-M-500 |  | Capped connection | 5d | 2026-06-28 A | 2026-06-28 A | HAL-E-MA-M-0100, HAL-P-PO-M-490 | 100% | 2026-08-02 | 2026-08-06 | Purchaser [40 h] | 04 | 03 | 02 | 01 | 1 |
| HAL-P-PO-M-520 |  | Roof vent caps | 5d | 2026-06-28 A | 2026-06-28 A | HAL-E-MA-M-0120, HAL-P-PO-M-510 | 100% | 2026-08-08 | 2026-08-12 | Purchaser [40 h] | 04 | 03 | 02 | 01 | 1 |
| HAL-P-PO-M-550 |  | Electric water heater | 5d | 2026-06-28 A | 2026-06-28 A | HAL-E-MA-M-0150, HAL-P-PO-M-540 | 100% | 2026-08-13 | 2026-08-18 | Purchaser [80 h] | 04 | 03 | 02 | 01 |  |
| HAL-P-PO-M-560 |  | Bib tap | 5d | 2026-06-28 A | 2026-06-28 A | HAL-E-MA-M-0170, HAL-P-PO-M-550 | 100% | 2026-08-13 | 2026-08-18 | Purchaser [80 h] | 04 | 03 | 02 | 01 |  |
| HAL-P-PO-M-570 |  | Toilet Fittings | 5d | 2026-06-28 A | 2026-06-28 A | HAL-E-MA-M-0180 | 100% | 2026-07-06 | 2026-07-11 | Purchaser [40 h] | 04 | 03 | 02 | 01 | 1 |
| HAL-P-PO-M-580 |  | Lavatory / wash basin | 5d | 2026-06-28 A | 2026-06-28 A | HAL-E-MA-M-0190, HAL-P-PO-M-560 | 100% | 2026-08-04 | 2026-08-09 | Purchaser [80 h] | 04 | 03 | 02 | 01 |  |

| ID | WBS | Activity | Duration | Start | Finish | Predecessors | Complete | Planned start | Planned finish | Resources | Phasing Code Category | Discipline | Procurement Lead Category | Procurement Stages | Remarks |
| --- | --- | --- | --- | --- | --- | --- | --- | --- | --- | --- | --- | --- | --- | --- | --- |
|  | 4 | **MANUFACTURING** |  | 2026-01-29 | 2026-09-14 |  |  |  |  |  |  |  |  |  |  |
| HAL-P-MF-M-390 |  | Fire fighting valves | 80d | 2026-01-29 A | 2026-06-13 A | HAL-P-PO-M-390 | 100% | 2026-04-13 | 2026-07-19 | Loading workers | 04 | 03 | 02 | 02 |  |
| HAL-P-MF-M-440 |  | Automatic air release valve | 20d | 2026-01-29 A | 2026-06-13 A | HAL-P-PO-M-440 | 100% | 2026-03-26 | 2026-04-19 | Loading workers | 04 | 03 | 02 | 02 | 1 |
| HAL-P-MF-M-450 |  | OS & Y gate valve | 20d | 2026-01-29 A | 2026-06-13 A | HAL-P-PO-M-450 | 100% | 2026-04-01 | 2026-04-25 | Loading workers | 04 | 03 | 02 | 02 | 1 |
| HAL-P-MF-M-460 |  | Fire alarm check valve | 20d | 2026-01-29 A | 2026-06-13 A | HAL-P-PO-M-460 | 100% | 2026-04-07 | 2026-04-30 | Loading workers | 04 | 03 | 02 | 02 | 1 |
| HAL-P-MF-M-590 |  | Inline exhaust fans | 20d | 2026-02-11 A | 2026-06-27 A | HAL-P-PO-M-590 | 100% | 2026-04-19 | 2026-05-12 | Loading workers | 04 | 03 | 02 | 02 | 1 |
| HAL-P-MF-M-430 |  | U/G HDPE pipes | 80d | 2026-02-24 A | 2026-02-28 A | HAL-P-PO-M-430 | 100% | 2026-04-14 | 2026-07-20 | Loading workers | 04 | 03 | 02 | 02 |  |
| HAL-P-MF-M-510 |  | UPVC pipes | 81.12d | 2026-02-24 A | 2026-02-28 A | HAL-P-PO-M-510 | 100% | 2026-03-15 | 2026-06-22 | Loading workers | 04 | 03 | 02 | 02 |  |
| HAL-P-MF-M-540 |  | Gully trap | 80d | 2026-02-24 A | 2026-02-28 A | HAL-P-PO-M-540 | 100% | 2026-04-15 | 2026-07-20 | Loading workers | 04 | 03 | 02 | 02 |  |
| HAL-P-MF-M-660 |  | Warning tapes | 20d | 2026-03-29 A | 2026-07-23 A | HAL-P-PO-M-660 | 100% | 2026-06-21 | 2026-07-13 | Loading workers | 04 | 03 | 02 | 02 | 1 |
| HAL-P-MF-M-530 |  | Floor drain | 20d | 2026-04-06 A | 2026-06-06 A | HAL-P-PO-M-530 | 100% | 2026-07-08 | 2026-07-30 | Loading workers | 04 | 03 | 02 | 02 | 1 |
| HAL-P-MF-M-420 |  | Water supply valves | 81.12d | 2026-05-02 A | 2026-06-13 A | HAL-P-PO-M-420 | 100% | 2026-05-16 | 2026-08-22 | Loading workers | 04 | 03 | 02 | 02 |  |
| HAL-P-MF-M-480 |  | PPR pipes | 81.12d | 2026-05-02 A | 2026-05-07 A | HAL-P-PO-M-480 | 100% | 2026-05-17 | 2026-08-23 | Loading workers | 04 | 03 | 02 | 02 |  |
| HAL-P-MF-M-600 |  | HVAC duct | 81.12d | 2026-06-13 A | 2026-06-14 A | HAL-P-PO-M-600 | 100% | 2026-06-21 | 2026-09-24 | Loading workers | 04 | 03 | 02 | 02 |  |
| HAL-P-MF-M-610 |  | Flexible duct | 81.12d | 2026-06-13 A | 2026-06-14 A | HAL-P-PO-M-610 | 100% | 2026-06-25 | 2026-09-29 | Loading workers | 04 | 03 | 02 | 02 |  |
| HAL-P-MF-M-620 |  | Exhaust diffuser | 20d | 2026-06-13 A | 2026-06-14 A | HAL-P-PO-M-620 | 100% | 2026-07-01 | 2026-07-25 | Loading workers | 04 | 03 | 02 | 02 | 1 |
| HAL-P-MF-M-490 |  | Ball valve | 20d | 2026-06-28 A | 2026-07-25 A | HAL-P-PO-M-490 | 100% | 2026-08-02 | 2026-08-24 | Loading workers | 04 | 03 | 02 | 02 | 1 |
| HAL-P-MF-M-520 |  | Roof vent caps | 20d | 2026-06-28 A | 2026-07-25 A | HAL-P-PO-M-520 | 100% | 2026-08-13 | 2026-09-05 | Loading workers | 04 | 03 | 02 | 02 |  |
| HAL-P-MF-M-550 |  | Electric water heater | 20d | 2026-06-28 A | 2026-07-25 A | HAL-P-PO-M-550 | 100% | 2026-08-19 | 2026-09-10 | Loading workers | 04 | 03 | 02 | 02 |  |
| HAL-P-MF-M-570 |  | Toilet Fittings | 20d | 2026-06-28 A | 2026-07-25 A | HAL-P-PO-M-570 | 100% | 2026-07-12 | 2026-08-03 |  | 04 | 03 | 02 | 02 | 1 |
| HAL-P-MF-M-580 |  | Lavatory / wash basin | 20d | 2026-06-28 A | 2026-07-25 A | HAL-P-PO-M-580 | 100% | 2026-08-10 | 2026-09-01 | Loading workers | 04 | 03 | 02 | 02 |  |
| HAL-P-MF-M-3410 |  | Water tap | 10d | 2026-08-02 A | 2026-09-01 A | HAL-P-PO-M-3410 | 100% | 2026-08-02 | 2026-08-12 | Purchaser | 04 | 03 | 02 | 02 | 1 |
| HAL-P-MF-M-500 |  | Capped connection | 10d | 2026-08-08 A | 2026-09-01 A | HAL-P-PO-M-500 | 100% | 2026-08-08 | 2026-08-18 | Loading workers | 04 | 03 | 02 | 02 | 1 |
| HAL-P-MF-M-560 |  | Bib tap | 10d | 2026-08-19 A | 2026-09-14 A | HAL-P-PO-M-560 | 100% | 2026-08-19 | 2026-08-30 | Loading workers | 04 | 03 | 02 | 02 |  |

| ID | WBS | Activity | Duration | Start | Finish | Predecessors | Complete | Planned start | Planned finish | Resources | Cost | Actual cost | Phasing Code Category | Discipline | Procurement Lead Category | Procurement Stages |
| --- | --- | --- | --- | --- | --- | --- | --- | --- | --- | --- | --- | --- | --- | --- | --- | --- |
|  | 2 | **DELIVERY** |  | 2026-03-01 | 2026-09-15 |  |  |  |  |  |  |  |  |  |  |  |
| HAL-P-DL-M-430 |  | U/G HDPE pipes | 7d | 2026-03-01 A | 2026-03-01 A | HAL-P-MF-M-430 | 100% | 2026-07-20 | 2026-07-28 | Unloading workers [224 h]; Construction Cost [67928.8] | 67,928.76 | 67,928.76 | 04 | 03 | 02 | 03 |
| HAL-P-DL-M-510 |  | UPVC pipes | 7d | 2026-03-01 A | 2026-03-01 A | HAL-P-MF-M-510 | 100% | 2026-06-14 | 2026-06-22 | Unloading workers [224 h]; Construction Cost [62064.9] | 62,064.9 | 62,064.9 | 04 | 03 | 02 | 03 |
| HAL-P-DL-M-540 |  | Gully trap | 7d | 2026-03-01 A | 2026-03-01 A | HAL-P-MF-M-540, HAL-P-ST-A-1760, HAL-P-ST-A-330, HAL-E-ST-A-1750 | 100% | 2026-08-10 | 2026-08-18 | Unloading workers [224 h]; Construction Cost [10206] | 10,206 | 10,206 | 04 | 03 | 02 | 03 |
| HAL-P-DL-M-480 |  | PPR pipes | 7d | 2026-05-09 A | 2026-05-09 A | HAL-P-MF-M-480 | 100% | 2026-08-23 | 2026-08-31 | Unloading workers [896 h]; Construction Cost [47658.4] | 47,658.38 | 47,658.38 | 04 | 03 | 02 | 03 |
| HAL-P-DL-M-390 |  | Fire fighting valves | 7d | 2026-05-13 A | 2026-06-13 A | HAL-P-MF-M-390, HAL-P-ST-M-350 | 100% | 2026-10-07 | 2026-10-14 | Unloading workers [224 h]; Construction Cost [27932.8] | 27,932.85 | 27,932.85 | 04 | 03 | 02 | 03 |
| HAL-P-DL-M-420 |  | Water supply valves | 7d | 2026-05-13 A | 2026-06-13 A | HAL-P-MF-M-420, HAL-P-ST-A-1720 | 100% | 2026-10-10 | 2026-10-17 | Unloading workers [224 h]; Construction Cost [26730] | 26,730 | 26,730 | 04 | 03 | 02 | 03 |
| HAL-P-DL-M-440 |  | Automatic air release valve | 7d | 2026-05-13 A | 2026-06-13 A | HAL-P-MF-M-440 | 100% | 2026-07-11 | 2026-07-18 | Unloading workers [224 h]; Construction Cost [1032.75] | 1,032.75 | 1,032.75 | 04 | 03 | 02 | 03 |
| HAL-P-DL-M-450 |  | OS & Y gate valve | 7d | 2026-05-13 A | 2026-06-13 A | HAL-P-MF-M-450 | 100% | 2026-07-11 | 2026-07-18 | Unloading workers [224 h]; Construction Cost [11105.1] | 11,105.1 | 11,105.1 | 04 | 03 | 02 | 03 |
| HAL-P-DL-M-460 |  | Fire alarm check valve | 7d | 2026-05-13 A | 2026-06-13 A | HAL-P-MF-M-460 | 100% | 2026-07-11 | 2026-07-18 | Unloading workers [224 h]; Construction Cost [15795] | 15,795 | 15,795 | 04 | 03 | 02 | 03 |
| HAL-P-DL-M-530 |  | Floor drain | 7d | 2026-06-06 A | 2026-06-06 A | HAL-P-MF-M-530 | 100% | 2026-08-25 | 2026-09-01 | Unloading workers [224 h]; Construction Cost [23328] | 23,328 | 23,328 | 04 | 03 | 02 | 03 |
| HAL-P-DL-M-600 |  | HVAC duct | 7d | 2026-06-14 A | 2026-06-14 A | HAL-P-MF-M-600 | 100% | 2026-09-24 | 2026-10-03 | Unloading workers [224 h]; Construction Cost [345424] | 345,424.5 | 345,424.5 | 04 | 03 | 02 | 03 |
| HAL-P-DL-M-610 |  | Flexible duct | 7d | 2026-06-14 A | 2026-06-14 A | HAL-P-MF-M-610 | 100% | 2026-09-29 | 2026-10-07 | Unloading workers [224 h]; Construction Cost [41193.4] | 41,193.36 | 41,193.36 | 04 | 03 | 02 | 03 |
| HAL-P-DL-M-620 |  | Exhaust diffuser | 7d | 2026-06-14 A | 2026-06-14 A | HAL-P-MF-M-620 | 100% | 2026-07-11 | 2026-07-18 | Unloading workers [224 h]; Construction Cost [21870] | 21,870 | 21,870 | 04 | 03 | 02 | 03 |
| HAL-P-DL-M-590 |  | Inline exhaust fans | 7d | 2026-06-27 A | 2026-06-27 A | HAL-P-MF-M-590 | 100% | 2026-08-15 | 2026-08-22 | Unloading workers [336 h]; Construction Cost [22781.2] | 22,781.25 | 22,781.25 | 04 | 03 | 02 | 03 |
| HAL-P-DL-M-580 |  | Lavatory / wash basin | 1d | 2026-06-28 A | 2026-07-25 A | HAL-P-MF-M-580 | 100% | 2026-09-17 | 2026-09-17 | Unloading workers [224 h]; Construction Cost [44712] | 44,712 | 44,712 | 04 | 03 | 02 | 03 |
| HAL-P-DL-M-490 |  | Ball valve | 7d | 2026-07-25 A | 2026-07-25 A | HAL-P-MF-M-490 | 100% | 2026-08-25 | 2026-09-01 | Unloading workers [224 h]; Construction Cost [7848.9] | 7,848.9 | 7,848.9 | 04 | 03 | 02 | 03 |
| HAL-P-DL-M-520 |  | Roof vent caps | 7d | 2026-07-25 A | 2026-07-25 A | HAL-P-MF-M-520 | 100% | 2026-09-06 | 2026-09-13 | Unloading workers [224 h]; Construction Cost [1822.5] | 1,822.5 | 1,822.5 | 04 | 03 | 02 | 03 |
| HAL-P-DL-M-550 |  | Electric water heater | 7d | 2026-07-25 A | 2026-07-25 A | HAL-P-MF-M-550 | 100% | 2026-09-12 | 2026-09-19 | Unloading workers [336 h]; Construction Cost [3888] | 3,888 | 3,888 | 04 | 03 | 02 | 03 |
| HAL-P-DL-M-570 |  | Toilet Fittings | 5d | 2026-07-25 A | 2026-07-25 A | HAL-P-MF-M-570 | 100% | 2026-08-19 | 2026-08-24 | Construction Cost [47652.3]; Unloading workers [80 h] | 47,652.3 | 47,652.3 | 04 | 03 | 02 | 03 |
| HAL-P-DL-M-660 |  | Warning tapes | 7d | 2026-07-25 A | 2026-07-25 A | HAL-P-MF-M-660 | 100% | 2026-07-28 | 2026-08-04 | Unloading workers [112 h]; Construction Cost [15006.6] | 15,006.6 | 15,006.6 | 04 | 03 | 02 | 03 |
| HAL-P-DL-M-3410 |  | Water tap | 7d | 2026-09-02 A | 2026-09-02 A | HAL-P-MF-M-3410 | 100% | 2026-10-01 | 2026-10-08 | Purchaser [224 h]; Construction Cost [5832] | 5,832 | 5,832 | 04 | 03 | 02 | 03 |
| HAL-P-DL-M-500 |  | Capped connection | 7d | 2026-09-02 A | 2026-09-02 A | HAL-P-MF-M-500 | 100% | 2026-10-01 | 2026-10-08 | Unloading workers [224 h]; Construction Cost [631.8] | 631.8 | 631.8 | 04 | 03 | 02 | 03 |
| HAL-P-DL-M-560 |  | Bib tap | 7d | 2026-09-15 A | 2026-09-15 A | HAL-P-MF-M-560 | 100% | 2026-09-21 | 2026-09-29 | Unloading workers [224 h]; Construction Cost [4860] | 4,860 | 4,860 | 04 | 03 | 02 | 03 |

| ID | WBS | Activity | Duration | Start | Finish | Predecessors | Complete | Planned start | Planned finish | Phasing Code Category | Discipline | Procurement Lead Category | Procurement Stages |
| --- | --- | --- | --- | --- | --- | --- | --- | --- | --- | --- | --- | --- | --- |
|  | 3 | **STAGING TIME** |  | 2026-03-01 | 2026-09-15 |  |  |  |  |  |  |  |  |
| HAL-P-ST-M-430 |  | U/G HDPE pipes | 7d | 2026-03-01 A | 2026-03-01 A | HAL-P-DL-M-430 | 100% | 2026-05-11 | 2026-05-19 | 04 | 03 | 02 | 04 |
| HAL-P-ST-M-510 |  | UPVC pipes | 7d | 2026-03-01 A | 2026-03-01 A | HAL-P-DL-M-510, HAL-P-ST-M-490, HAL-P-ST-M-620 | 100% | 2026-09-05 | 2026-09-13 | 04 | 03 | 02 | 04 |
| HAL-P-ST-M-540 |  | Gully trap | 7d | 2026-03-01 A | 2026-03-01 A | HAL-P-DL-M-540, HAL-P-ST-M-520, HAL-P-ST-M-570 | 100% | 2026-09-03 | 2026-09-12 | 04 | 03 | 02 | 04 |
| HAL-P-ST-M-480 |  | PPR pipes | 7d | 2026-05-09 A | 2026-05-09 A | HAL-P-DL-M-480 | 100% | 2026-08-31 | 2026-09-08 | 04 | 03 | 02 | 04 |
| HAL-P-ST-M-390 |  | Fire fighting valves | 7d | 2026-05-13 A | 2026-06-13 A | HAL-P-DL-M-390 | 100% | 2026-10-15 | 2026-10-22 | 04 | 03 | 02 | 04 |
| HAL-P-ST-M-420 |  | Water supply valves | 7d | 2026-05-13 A | 2026-06-13 A | HAL-P-DL-M-420, HAL-P-ST-M-540, HAL-P-ST-M-460, HAL-P-ST-M-530, HAL-P-ST-M-450 | 100% | 2026-10-18 | 2026-10-25 | 04 | 03 | 02 | 04 |
| HAL-P-ST-M-530 |  | Floor drain | 7d | 2026-06-06 A | 2026-06-06 A | HAL-P-DL-M-530 | 100% | 2026-09-02 | 2026-09-09 | 04 | 03 | 02 | 04 |
| HAL-P-ST-M-440 |  | Automatic air release valve | 7d | 2026-06-13 A | 2026-06-13 A | HAL-P-DL-M-440 | 100% | 2026-07-27 | 2026-08-03 | 04 | 03 | 02 | 04 |
| HAL-P-ST-M-450 |  | OS & Y gate valve | 7d | 2026-06-13 A | 2026-06-13 A | HAL-P-DL-M-450 | 100% | 2026-07-27 | 2026-08-03 | 04 | 03 | 02 | 04 |
| HAL-P-ST-M-460 |  | Fire alarm check valve | 7d | 2026-06-13 A | 2026-06-13 A | HAL-P-DL-M-460, HAL-P-ST-M-440 | 100% | 2026-08-04 | 2026-08-11 | 04 | 03 | 02 | 04 |
| HAL-P-ST-M-600 |  | HVAC duct | 7d | 2026-06-14 A | 2026-06-14 A | HAL-P-DL-M-600 | 100% | 2026-10-03 | 2026-10-11 | 04 | 03 | 02 | 04 |
| HAL-P-ST-M-610 |  | Flexible duct | 7d | 2026-06-14 A | 2026-06-14 A | HAL-P-DL-M-610 | 100% | 2026-10-07 | 2026-10-15 | 04 | 03 | 02 | 04 |
| HAL-P-ST-M-620 |  | Exhaust diffuser | 7d | 2026-06-14 A | 2026-06-14 A | HAL-P-DL-M-620 | 100% | 2026-07-19 | 2026-07-26 | 04 | 03 | 02 | 04 |
| HAL-P-ST-M-590 |  | Inline exhaust fans | 7d | 2026-06-27 A | 2026-06-27 A | HAL-P-DL-M-590 | 100% | 2026-08-23 | 2026-08-30 | 04 | 03 | 02 | 04 |
| HAL-P-ST-M-490 |  | Ball valve | 7d | 2026-07-25 A | 2026-07-25 A | HAL-P-DL-M-490, HAL-P-ST-M-610, HAL-P-ST-M-600, HAL-P-ST-M-480 | 100% | 2026-09-02 | 2026-09-09 | 04 | 03 | 02 | 04 |
| HAL-P-ST-M-520 |  | Roof vent caps | 7d | 2026-07-25 A | 2026-07-25 A | HAL-P-DL-M-520, HAL-P-ST-M-500 | 100% | 2026-09-16 | 2026-09-24 | 04 | 03 | 02 | 04 |
| HAL-P-ST-M-550 |  | Electric water heater | 7d | 2026-07-25 A | 2026-07-25 A | HAL-P-DL-M-550 | 100% | 2026-09-20 | 2026-09-28 | 04 | 03 | 02 | 04 |
| HAL-P-ST-M-570 |  | Toilet Fittings | 5d | 2026-07-25 A | 2026-07-25 A | HAL-P-DL-M-570 | 100% | 2026-08-25 | 2026-08-30 | 04 | 03 | 02 | 04 |
| HAL-P-ST-M-580 |  | Lavatory / wash basin | 7d | 2026-07-25 A | 2026-07-25 A | HAL-P-DL-M-580 | 100% | 2026-09-19 | 2026-09-27 | 04 | 03 | 02 | 04 |
| HAL-P-ST-M-660 |  | Warning tapes | 7d | 2026-07-25 A | 2026-07-25 A | HAL-P-DL-M-660 | 100% | 2026-08-25 | 2026-09-01 | 04 | 03 | 02 | 04 |
| HAL-P-ST-M-3410 |  | Water tap | 7d | 2026-09-02 A | 2026-09-02 A | HAL-P-DL-M-3410 | 100% | 2026-10-10 | 2026-10-17 | 04 | 03 | 02 | 04 |
| HAL-P-ST-M-500 |  | Capped connection | 7d | 2026-09-02 A | 2026-09-02 A | HAL-P-DL-M-500 | 100% | 2026-10-10 | 2026-10-17 | 04 | 03 | 02 | 04 |
| HAL-P-ST-M-560 |  | Bib tap | 7d | 2026-09-15 A | 2026-09-15 A | HAL-P-DL-M-560 | 100% | 2026-09-30 | 2026-10-07 | 04 | 03 | 02 | 04 |

| ID | WBS | Activity | Duration | Start | Finish | Predecessors | Complete | Planned start | Planned finish | Resources | Cost | Actual cost | Phasing Code Category | Discipline | Procurement Lead Category | Procurement Stages | Remarks |
| --- | --- | --- | --- | --- | --- | --- | --- | --- | --- | --- | --- | --- | --- | --- | --- | --- | --- |
|  | 3 | **ELECTRICAL** |  | 2026-01-29 | 2026-10-01 |  |  |  |  |  |  |  |  |  |  |  |  |
|  | 1 | **PO ISSUE** |  | 2026-01-29 | 2026-07-27 |  |  |  |  |  |  |  |  |  |  |  |  |
| HAL-P-PO-E-350 |  | Wiring devices | 5d | 2026-01-29 A | 2026-01-29 A | HAL-E-MA-E-0140, HAL-P-PO-E-340 | 100% | 2026-02-25 | 2026-03-04 | Purchaser [40 h] |  |  | 04 | 04 | 02 | 01 |  |
| HAL-P-PO-E-340 |  | Grounding system | 4.12d | 2026-03-04 A | 2026-03-04 A | HAL-E-MA-E-0120, HAL-P-PO-E-2100 | 100% | 2026-04-04 | 2026-04-08 | Purchaser [80 h] |  |  | 04 | 04 | 02 | 01 |  |
| HAL-P-PO-E-310 |  | PVC conduits | 5d | 2026-03-11 A | 2026-03-11 A | HAL-E-MA-E-0040 | 100% | 2026-03-16 | 2026-03-22 | Purchaser [40 h] |  |  | 04 | 04 | 02 | 01 |  |
| HAL-P-PO-E-320 |  | Wires | 5d | 2026-06-01 A | 2026-06-01 A | HAL-E-MA-E-0050, HAL-P-PO-E-310 | 100% | 2026-06-06 | 2026-06-10 | Purchaser [40 h] |  |  | 04 | 04 | 02 | 01 |  |
| HAL-P-PO-E-330 |  | Wall mounted, duplex, telephone and data outlet | 5d | 2026-06-03 A | 2026-06-03 A | HAL-E-MA-E-0110, HAL-P-PO-E-300 | 100% | 2026-07-02 | 2026-07-07 | Purchaser [80 h] |  |  | 04 | 04 | 02 | 01 |  |
| HAL-P-PO-E-370 |  | HDPE ducts | 5d | 2026-06-03 A | 2026-06-03 A | HAL-E-MA-E-0160, HAL-P-PO-E-350 | 100% | 2026-06-16 | 2026-06-21 | Purchaser [40 h] |  |  | 04 | 04 | 02 | 01 |  |
| HAL-P-PO-E-290 |  | Low Voltage cables | 5d | 2026-06-16 A | 2026-06-16 A | HAL-E-MA-E-0010, HAL-P-PO-E-370 | 100% | 2026-07-12 | 2026-07-16 | Purchaser [40 h] |  |  | 04 | 04 | 02 | 01 | 1 |
| HAL-P-PO-E-2100 |  | Cable Tray | 5d | 2026-07-27 A | 2026-07-27 A | HAL-E-MA-E-210, HAL-P-PO-E-320 | 100% | 2026-08-03 | 2026-08-08 | Purchaser [40 h] |  |  | 04 | 04 | 02 | 01 | 1 |
| HAL-P-PO-E-300 |  | Disconnect switches | 5d | 2026-07-27 A | 2026-07-27 A | HAL-E-MA-E-0030, HAL-P-PO-E-290 | 100% | 2026-08-09 | 2026-08-13 | Purchaser [40 h] |  |  | 04 | 04 | 02 | 01 | 1 |
|  | 4 | **MANUFACTURING** |  | 2026-01-29 | 2026-10-01 |  |  |  |  |  |  |  |  |  |  |  |  |
| HAL-P-MF-E-350 |  | Wiring devices | 82d | 2026-01-29 A | 2026-06-02 A | HAL-P-PO-E-350 | 100% | 2026-03-04 | 2026-06-13 | Loading workers |  |  | 04 | 04 | 02 | 02 |  |
| HAL-P-MF-E-340 |  | Grounding system | 80d | 2026-03-04 A | 2026-05-02 A | HAL-P-PO-E-340 | 100% | 2026-04-08 | 2026-07-14 | Loading workers |  |  | 04 | 04 | 02 | 02 |  |
| HAL-P-MF-E-310 |  | PVC conduits | 40d | 2026-03-11 A | 2026-05-11 A | HAL-P-PO-E-310 | 100% | 2026-03-23 | 2026-05-07 | Loading workers |  |  | 04 | 04 | 02 | 02 |  |
| HAL-P-MF-E-320 |  | Wires | 81.12d | 2026-06-01 A | 2026-06-03 A | HAL-P-PO-E-320 | 100% | 2026-06-11 | 2026-09-14 | Loading workers |  |  | 04 | 04 | 02 | 02 |  |
| HAL-P-MF-E-330 |  | Wall mounted, duplex, telephone and data outlet | 30d | 2026-06-03 A | 2026-10-01 A | HAL-P-PO-E-330 | 100% | 2026-07-08 | 2026-08-11 | Loading workers |  |  | 04 | 04 | 02 | 02 | 1 |
| HAL-P-MF-E-370 |  | HDPE ducts | 80d | 2026-06-03 A | 2026-06-04 A | HAL-P-PO-E-370 | 100% | 2026-06-22 | 2026-09-22 | Loading workers |  |  | 04 | 04 | 02 | 02 |  |
| HAL-P-MF-E-290 |  | Low Voltage cables | 20d | 2026-06-16 A | 2026-07-16 A | HAL-P-PO-E-290 | 100% | 2026-07-18 | 2026-08-09 | Loading workers |  |  | 04 | 04 | 02 | 02 | 1 |
| HAL-P-MF-E-2100 |  | Cable Tray | 20d | 2026-07-27 A | 2026-08-16 A | HAL-P-PO-E-2100 | 100% | 2026-08-09 | 2026-08-31 | Purchaser |  |  | 04 | 04 | 02 | 02 | 1 |
| HAL-P-MF-E-300 |  | Disconnect switches | 20d | 2026-07-27 A | 2026-08-16 A | HAL-P-PO-E-300 | 100% | 2026-08-15 | 2026-09-06 | Loading workers |  |  | 04 | 04 | 02 | 02 |  |
|  | 2 | **DELIVERY** |  | 2026-03-12 | 2026-10-01 |  |  |  |  |  |  |  |  |  |  |  |  |
| HAL-P-DL-E-310 |  | PVC conduits | 7d | 2026-03-12 A | 2026-03-12 A | HAL-P-MF-E-310 | 100% | 2026-05-09 | 2026-05-16 | Unloading workers [896 h]; Construction Cost [3863.7] | 3,863.7 | 3,863.7 | 04 | 04 | 02 | 03 |  |
| HAL-P-DL-E-340 |  | Grounding system | 7d | 2026-04-04 A | 2026-05-02 A | HAL-P-MF-E-340 | 100% | 2026-06-29 | 2026-07-06 | Unloading workers [224 h]; Construction Cost [95510.5] | 95,510.48 | 95,510.48 | 04 | 04 | 02 | 03 |  |
| HAL-P-DL-E-350 |  | Wiring devices | 7d | 2026-06-03 A | 2026-06-03 A | HAL-P-MF-E-350 | 100% | 2026-08-25 | 2026-09-02 | Unloading workers [224 h]; Construction Cost [50641.2] | 50,641.2 | 50,641.2 | 04 | 04 | 02 | 03 |  |
| HAL-P-DL-E-320 |  | Wires | 7d | 2026-06-04 A | 2026-06-04 A | HAL-P-MF-E-320 | 100% | 2026-09-14 | 2026-09-22 | Unloading workers [224 h]; Construction Cost [10935] | 10,935 | 10,935 | 04 | 04 | 02 | 03 |  |
| HAL-P-DL-E-370 |  | HDPE ducts | 7d | 2026-06-04 A | 2026-06-04 A | HAL-P-MF-E-370 | 100% | 2026-09-24 | 2026-10-01 | Unloading workers [112 h]; Construction Cost [274495] | 274,495.23 | 274,495.23 | 04 | 04 | 02 | 03 |  |
| HAL-P-DL-E-290 |  | Low Voltage cables | 7d | 2026-07-16 A | 2026-07-16 A | HAL-P-MF-E-290 | 100% | 2026-08-18 | 2026-08-25 | Unloading workers [224 h]; Construction Cost [104031] | 104,031 | 104,031 | 04 | 04 | 02 | 03 |  |
| HAL-P-DL-E-2100 |  | Cable Tray | 7d | 2026-08-16 A | 2026-08-16 A | HAL-P-MF-E-2100 | 100% | 2026-09-16 | 2026-09-24 | Purchaser [224 h]; Construction Cost [704.7] | 704.7 | 704.7 | 04 | 04 | 02 | 03 |  |
| HAL-P-DL-E-300 |  | Disconnect switches | 7d | 2026-08-16 A | 2026-08-16 A | HAL-P-MF-E-300 | 100% | 2026-09-16 | 2026-09-24 | Unloading workers [224 h]; Construction Cost [63009.9] | 63,009.9 | 63,009.9 | 04 | 04 | 02 | 03 |  |
| HAL-P-DL-E-330 |  | Wall mounted, duplex, telephone and data outlet | 7d | 2026-10-01 A | 2026-10-01 A | HAL-P-MF-E-330 | 100% | 2026-10-08 | 2026-10-15 | Unloading workers [224 h]; Construction Cost [56886.3] | 56,886.3 | 56,886.3 | 04 | 04 | 02 | 03 |  |

| ID | WBS | Activity | Duration | Start | Finish | Predecessors | Complete | Planned start | Planned finish | Resources | Phasing Code Category | Discipline | Procurement Lead Category | Procurement Stages | Remarks |
| --- | --- | --- | --- | --- | --- | --- | --- | --- | --- | --- | --- | --- | --- | --- | --- |
|  | 3 | **STAGING TIME** |  | 2026-03-12 | 2026-10-01 |  |  |  |  |  |  |  |  |  |  |
| HAL-P-ST-E-310 |  | PVC conduits | 7d | 2026-03-12 A | 2026-03-12 A | HAL-P-DL-E-310 | 100% | 2026-05-17 | 2026-05-24 |  | 04 | 04 | 02 | 04 |  |
| HAL-P-ST-E-340 |  | Grounding system | 7d | 2026-04-04 A | 2026-05-02 A | HAL-P-DL-E-340 | 100% | 2026-07-07 | 2026-07-14 |  | 04 | 04 | 02 | 04 |  |
| HAL-P-ST-E-350 |  | Wiring devices | 7d | 2026-06-03 A | 2026-06-03 A | HAL-P-DL-E-350 | 100% | 2026-09-02 | 2026-09-10 |  | 04 | 04 | 02 | 04 |  |
| HAL-P-ST-E-320 |  | Wires | 7d | 2026-06-04 A | 2026-06-04 A | HAL-P-DL-E-320 | 100% | 2026-09-22 | 2026-10-01 |  | 04 | 04 | 02 | 04 |  |
| HAL-P-ST-E-370 |  | HDPE ducts | 7d | 2026-06-04 A | 2026-06-04 A | HAL-P-DL-E-370 | 100% | 2026-10-03 | 2026-10-10 |  | 04 | 04 | 02 | 04 |  |
| HAL-P-ST-E-290 |  | Low Voltage cables | 7d | 2026-07-16 A | 2026-07-16 A | HAL-P-DL-E-290 | 100% | 2026-08-26 | 2026-09-02 |  | 04 | 04 | 02 | 04 |  |
| HAL-P-ST-E-2100 |  | Cable Tray | 7d | 2026-08-16 A | 2026-08-16 A | HAL-P-DL-E-2100 | 100% | 2026-09-26 | 2026-10-03 |  | 04 | 04 | 02 | 04 |  |
| HAL-P-ST-E-300 |  | Disconnect switches | 7d | 2026-08-16 A | 2026-08-16 A | HAL-P-DL-E-300 | 100% | 2026-09-26 | 2026-10-03 |  | 04 | 04 | 02 | 04 |  |
| HAL-P-ST-E-330 |  | Wall mounted, duplex, telephone and data outlet | 7d | 2026-10-01 A | 2026-10-01 A | HAL-P-DL-E-330 | 100% | 2026-10-17 | 2026-10-24 |  | 04 | 04 | 02 | 04 |  |
|  | 4 | **EXTERNAL** |  | 2026-06-17 | 2026-10-15 |  |  |  |  |  |  |  |  |  |  |
|  | 1 | **PO ISSUE** |  | 2026-06-17 | 2026-10-12 |  |  |  |  |  |  |  |  |  |  |
| HAL-P-PO-EX-80 |  | Asphalt works | 5d | 2026-06-17 A | 2026-06-17 A | HAL-E-MA-EX-0010 | 100% | 2026-06-20 | 2026-06-24 | Purchaser [80 h] | 04 | 06 | 02 | 01 | 1 |
| HAL-P-PO-EX-150 |  | Gravel bedding | 5d | 2026-06-23 A | 2026-06-23 A | HAL-E-MA-EX-0080 | 100% | 2026-07-05 | 2026-07-11 | Purchaser [80 h] | 04 | 06 | 02 | 01 | 1 |
| HAL-P-PO-EX-130 |  | Interlock tiles | 5d | 2026-07-24 A | 2026-07-24 A | HAL-E-MA-EX-0060 | 100% | 2026-07-27 | 2026-08-01 | Purchaser [80 h] | 04 | 06 | 02 | 01 | 1 |
| HAL-P-PO-EX-140 |  | Curbstones | 5d | 2026-07-24 A | 2026-07-24 A | HAL-E-MA-EX-0070 | 100% | 2026-07-27 | 2026-08-01 | Purchaser [80 h] | 04 | 06 | 02 | 01 | 1 |
| HAL-P-PO-EX-110 |  | Road signs | 5d | 2026-08-06 A | 2026-08-06 A | HAL-E-MA-EX-0040 SS | 100% | 2026-08-10 | 2026-08-15 | Purchaser [80 h] | 04 | 06 | 02 | 01 | 1 |
| HAL-P-PO-EX-90 |  | Concrete parking bumper | 5d | 2026-08-16 A | 2026-08-16 A | HAL-E-MA-EX-0020 | 100% | 2026-08-24 | 2026-08-29 | Purchaser [80 h] | 04 | 06 | 02 | 01 | 1 |
| HAL-P-PO-EX-100 |  | Road markings | 5d | 2026-10-12 A | 2026-10-12 A | HAL-E-MA-EX-0030 SS | 100% | 2026-10-12 | 2026-10-17 | Purchaser [80 h] | 04 | 06 | 02 | 01 | 1 |
|  | 4 | **MANUFACTURING** |  | 2026-06-17 | 2026-10-14 |  |  |  |  |  |  |  |  |  |  |
| HAL-P-MF-EX-80 |  | Asphalt works | 80d | 2026-06-17 A | 2026-06-20 A | HAL-P-PO-EX-80 | 100% | 2026-06-25 | 2026-09-27 | Loading workers | 04 | 06 | 02 | 02 | 1 |
| HAL-P-MF-EX-150 |  | Gravel bedding | 30d | 2026-06-25 A | 2026-06-27 A | HAL-P-PO-EX-150 | 100% | 2026-07-11 | 2026-08-15 | Loading workers | 04 | 06 | 02 | 02 | 1 |
| HAL-P-MF-EX-130 |  | Interlock tiles | 25d | 2026-07-24 A | 2026-07-25 A | HAL-P-PO-EX-130 | 100% | 2026-08-02 | 2026-08-30 | Loading workers | 04 | 06 | 02 | 02 | 1 |
| HAL-P-MF-EX-140 |  | Curbstones | 25d | 2026-07-24 A | 2026-07-25 A | HAL-P-PO-EX-140 | 100% | 2026-08-02 | 2026-08-30 | Loading workers | 04 | 06 | 02 | 02 | 1 |
| HAL-P-MF-EX-110 |  | Road signs | 25d | 2026-08-06 A | 2026-08-08 A | HAL-P-PO-EX-110 | 100% | 2026-08-16 | 2026-09-13 | Loading workers | 04 | 06 | 02 | 02 | 1 |
| HAL-P-MF-EX-90 |  | Concrete parking bumper | 25d | 2026-08-16 A | 2026-09-17 A | HAL-P-PO-EX-90 | 100% | 2026-08-30 | 2026-09-28 | Loading workers | 04 | 06 | 02 | 02 | 1 |
| HAL-P-MF-EX-100 |  | Road markings | 10d | 2026-10-12 A | 2026-10-14 A | HAL-P-PO-EX-100 | 100% | 2026-10-18 | 2026-10-28 | Loading workers | 04 | 06 | 02 | 02 | 1 |

| ID | WBS | Activity | Duration | Start | Finish | Predecessors | Complete | Planned start | Planned finish | Resources | Cost | Actual cost | Phasing Code Category | Discipline | Procurement Lead Category | Procurement Stages |
| --- | --- | --- | --- | --- | --- | --- | --- | --- | --- | --- | --- | --- | --- | --- | --- | --- |
|  | 2 | **DELIVERY** |  | 2026-06-20 | 2026-10-15 |  |  |  |  |  |  |  |  |  |  |  |
| HAL-P-DL-EX-80 |  | Asphalt works | 7d | 2026-06-20 A | 2026-06-20 A | HAL-P-MF-EX-80 | 100% | 2026-09-28 | 2026-10-05 | Unloading workers [224 h]; Construction Cost [1151009] | 1,151,009.43 | 1,151,009.43 | 04 | 06 | 02 | 03 |
| HAL-P-DL-EX-150 |  | Gravel bedding | 2d | 2026-06-27 A | 2026-06-27 A | HAL-P-MF-EX-150 | 100% | 2026-08-15 | 2026-08-17 | Unloading workers [224 h]; Construction Cost [34763.8] | 34,763.85 | 34,763.85 | 04 | 06 | 02 | 03 |
| HAL-P-DL-EX-130 |  | Interlock tiles | 2d | 2026-07-25 A | 2026-07-25 A | HAL-P-MF-EX-130 | 100% | 2026-08-31 | 2026-09-01 | Unloading workers [224 h]; Construction Cost [85760.8] | 85,760.77 | 85,760.77 | 04 | 06 | 02 | 03 |
| HAL-P-DL-EX-140 |  | Curbstones | 2d | 2026-07-25 A | 2026-07-25 A | HAL-P-MF-EX-140 | 100% | 2026-08-31 | 2026-09-01 | Unloading workers [224 h]; Construction Cost [57773.2] | 57,773.25 | 57,773.25 | 04 | 06 | 02 | 03 |
| HAL-P-DL-EX-110 |  | Road signs | 2d | 2026-08-08 A | 2026-08-08 A | HAL-P-MF-EX-110 | 100% | 2026-09-14 | 2026-09-15 | Unloading workers [224 h]; Construction Cost [21993.9] | 21,993.93 | 21,993.93 | 04 | 06 | 02 | 03 |
| HAL-P-DL-EX-90 |  | Concrete parking bumper | 2d | 2026-09-19 A | 2026-09-19 A | HAL-P-MF-EX-90 | 100% | 2026-10-21 | 2026-10-22 | Unloading workers [224 h]; Construction Cost [6386.04] | 6,386.04 | 6,386.04 | 04 | 06 | 02 | 03 |
| HAL-P-DL-EX-100 |  | Road markings | 2d | 2026-10-15 A | 2026-10-15 A | HAL-P-MF-EX-100 | 100% | 2026-10-27 | 2026-10-28 | Unloading workers [224 h]; Construction Cost [15904.4] | 15,904.35 | 15,904.35 | 04 | 06 | 02 | 03 |
|  | 3 | **STAGING TIME** |  | 2026-06-27 | 2026-10-15 |  |  |  |  |  |  |  |  |  |  |  |
| HAL-P-ST-EX-150 |  | Gravel bedding | 7d | 2026-06-27 A | 2026-06-27 A | HAL-P-DL-EX-150, HAL-P-ST-EX-90 | 100% | 2026-08-19 | 2026-08-26 |  |  |  | 04 | 06 | 02 | 04 |
| HAL-P-ST-EX-130 |  | Interlock tiles | 7d | 2026-07-25 A | 2026-07-25 A | HAL-P-DL-EX-130 | 100% | 2026-09-02 | 2026-09-09 |  |  |  | 04 | 06 | 02 | 04 |
| HAL-P-ST-EX-140 |  | Curbstones | 7d | 2026-07-25 A | 2026-07-25 A | HAL-P-DL-EX-140 | 100% | 2026-09-02 | 2026-09-09 |  |  |  | 04 | 06 | 02 | 04 |
| HAL-P-ST-EX-110 |  | Road signs | 7d | 2026-08-08 A | 2026-08-08 A | HAL-P-DL-EX-110 | 100% | 2026-09-16 | 2026-09-24 |  |  |  | 04 | 06 | 02 | 04 |
| HAL-P-ST-EX-90 |  | Concrete parking bumper | 7d | 2026-09-19 A | 2026-09-19 A | HAL-P-DL-EX-90 | 100% | 2026-10-18 | 2026-10-25 |  |  |  | 04 | 06 | 02 | 04 |
| HAL-P-ST-EX-80 |  | Asphalt works | 1d | 2026-10-10 A | 2026-10-10 A | HAL-P-DL-EX-80 | 100% | 2026-10-12 | 2026-10-12 |  |  |  | 04 | 06 | 02 | 04 |
| HAL-P-ST-EX-100 |  | Road markings | 1d | 2026-10-15 A | 2026-10-15 A | HAL-P-DL-EX-100 | 100% | 2026-10-29 | 2026-10-29 |  |  |  | 04 | 06 | 02 | 04 |
|  | 5 | **ENVIRONMENTAL** |  | 2026-02-24 | 2026-08-02 |  |  |  |  |  |  |  |  |  |  |  |
|  | 1 | **PO ISSUE** |  | 2026-02-24 | 2026-02-24 |  |  |  |  |  |  |  |  |  |  |  |
| HAL-P-PO-EN-100 |  | HDPE pipes for fire system | 5d | 2026-02-24 A | 2026-02-24 A | HAL-E-MA-EN-0010 | 100% | 2026-04-27 | 2026-05-02 | Purchaser [40 h] |  |  | 04 | 06 | 02 | 01 |
| HAL-P-PO-EN-110 |  | Directly buried gate valve for fire system | 5d | 2026-02-24 A | 2026-02-24 A | HAL-E-MA-EN-0020, HAL-P-PO-EN-100 | 100% | 2026-06-03 | 2026-06-08 | Purchaser [40 h] |  |  | 04 | 06 | 02 | 01 |
| HAL-P-PO-EN-120 |  | HDPE pipes for water supply system | 5d | 2026-02-24 A | 2026-02-24 A | HAL-E-MA-EN-0030, HAL-P-PO-EN-110 | 100% | 2026-05-09 | 2026-05-13 | Purchaser [40 h] |  |  | 04 | 06 | 02 | 01 |
| HAL-P-PO-EN-140 |  | Air valve | 5d | 2026-02-24 A | 2026-02-24 A | HAL-E-MA-EN-0050, HAL-P-PO-EN-130 | 100% | 2026-06-14 | 2026-06-20 | Purchaser [40 h] |  |  | 04 | 06 | 02 | 01 |
| HAL-P-PO-EN-150 |  | Washout valve | 5d | 2026-02-24 A | 2026-02-24 A | HAL-E-MA-EN-0060, HAL-P-PO-EN-140 | 100% | 2026-06-20 | 2026-06-25 | Purchaser [40 h] |  |  | 04 | 06 | 02 | 01 |
| HAL-P-PO-EN-160 |  | Gate valve | 5d | 2026-02-24 A | 2026-02-24 A | HAL-E-MA-EN-0070, HAL-P-PO-EN-150 | 100% | 2026-06-25 | 2026-07-01 | Purchaser [40 h] |  |  | 04 | 06 | 02 | 01 |
| HAL-P-PO-EN-170 |  | GRP pipes | 5d | 2026-02-24 A | 2026-02-24 A | HAL-E-MA-EN-0080, HAL-P-PO-EN-160 | 100% | 2026-06-09 | 2026-06-15 | Purchaser [40 h] |  |  | 04 | 06 | 02 | 01 |
| HAL-P-PO-EN-130 |  | Directly buried gate valve for water system | 0.88d | 2026-02-24 A | 2026-02-24 A | HAL-E-MA-EN-0040, HAL-P-PO-EN-120 | 100% |  |  | Purchaser [80 h] |  |  | 04 | 06 | 02 | 01 |

| ID | WBS | Activity | Duration | Start | Finish | Predecessors | Complete | Planned start | Planned finish | Resources | Cost | Actual cost | Phasing Code Category | Discipline | Procurement Lead Category | Procurement Stages | Remarks |
| --- | --- | --- | --- | --- | --- | --- | --- | --- | --- | --- | --- | --- | --- | --- | --- | --- | --- |
|  | 4 | **MANUFACTURING** |  | 2026-02-24 | 2026-08-01 |  |  |  |  |  |  |  |  |  |  |  |  |
| HAL-P-MF-EN-100 |  | HDPE pipes for fire system | 80d | 2026-02-24 A | 2026-02-28 A | HAL-P-PO-EN-100 | 100% | 2026-05-03 | 2026-08-06 | Loading workers |  |  | 04 | 06 | 02 | 02 |  |
| HAL-P-MF-EN-110 |  | Directly buried gate valve for fire system | 30d | 2026-02-24 A | 2026-08-01 A | HAL-P-PO-EN-110 | 100% | 2026-06-09 | 2026-07-13 | Loading workers |  |  | 04 | 06 | 02 | 02 | 1 |
| HAL-P-MF-EN-120 |  | HDPE pipes for water supply system | 80d | 2026-02-24 A | 2026-02-28 A | HAL-P-PO-EN-120 | 100% | 2026-05-14 | 2026-08-18 | Loading workers |  |  | 04 | 06 | 02 | 02 |  |
| HAL-P-MF-EN-130 |  | Directly buried gate valve for water system | 30d | 2026-02-24 A | 2026-08-01 A | HAL-P-PO-EN-130 | 100% | 2026-06-14 | 2026-07-19 | Loading workers |  |  | 04 | 06 | 02 | 02 | 1 |
| HAL-P-MF-EN-140 |  | Air valve | 80d | 2026-02-24 A | 2026-05-13 A | HAL-P-PO-EN-140 | 100% | 2026-06-20 | 2026-09-21 | Loading workers |  |  | 04 | 06 | 02 | 02 |  |
| HAL-P-MF-EN-160 |  | Gate valve | 30d | 2026-02-24 A | 2026-08-01 A | HAL-P-PO-EN-160 | 100% | 2026-07-01 | 2026-08-05 | Loading workers |  |  | 04 | 06 | 02 | 02 | 1 |
| HAL-P-MF-EN-170 |  | GRP pipes | 80d | 2026-02-24 A | 2026-02-28 A | HAL-P-PO-EN-170 | 100% | 2026-06-15 | 2026-09-16 | Loading workers |  |  | 04 | 06 | 02 | 02 |  |
| HAL-P-MF-EN-150 |  | Washout valve | 30d | 2026-02-24 A | 2026-08-01 A | HAL-P-PO-EN-150 | 100% | 2026-02-24 | 2026-04-01 | Loading workers |  |  | 04 | 06 | 02 | 02 | 1 |
|  | 2 | **DELIVERY** |  | 2026-03-01 | 2026-08-02 |  |  |  |  |  |  |  |  |  |  |  |  |
| HAL-P-DL-EN-100 |  | HDPE pipes for fire system | 7d | 2026-03-01 A | 2026-03-01 A | HAL-P-MF-EN-100 | 100% | 2026-08-08 | 2026-08-15 | Unloading workers [224 h]; Construction Cost [65612.4] | 65,612.43 | 65,612.43 | 04 | 06 | 02 | 03 |  |
| HAL-P-DL-EN-120 |  | HDPE pipes for water supply system | 7d | 2026-03-01 A | 2026-03-01 A | HAL-P-MF-EN-120 | 100% | 2026-08-19 | 2026-08-26 | Unloading workers [224 h]; Construction Cost [63838.8] | 63,838.8 | 63,838.8 | 04 | 06 | 02 | 03 |  |
| HAL-P-DL-EN-170 |  | GRP pipes | 7d | 2026-03-01 A | 2026-03-01 A | HAL-P-MF-EN-170 | 100% | 2026-09-16 | 2026-09-26 | Unloading workers [224 h]; Construction Cost [86734.5] | 86,734.53 | 86,734.53 | 04 | 06 | 02 | 03 |  |
| HAL-P-DL-EN-140 |  | Air valve | 7d | 2026-05-13 A | 2026-05-13 A | HAL-P-MF-EN-140 | 100% | 2026-09-21 | 2026-09-30 | Unloading workers [224 h]; Construction Cost [5832] | 5,832 | 5,832 | 04 | 06 | 02 | 03 |  |
| HAL-P-DL-EN-110 |  | Directly buried gate valve for fire system | 7d | 2026-08-02 A | 2026-08-02 A | HAL-P-MF-EN-110 | 100% | 2026-08-13 | 2026-08-20 | Unloading workers [224 h]; Construction Cost [11858.4] | 11,858.4 | 11,858.4 | 04 | 06 | 02 | 03 |  |
| HAL-P-DL-EN-130 |  | Directly buried gate valve for water system | 7d | 2026-08-02 A | 2026-08-02 A | HAL-P-MF-EN-130 | 100% | 2026-08-13 | 2026-08-20 | Unloading workers [112 h]; Construction Cost [11955.6] | 11,955.6 | 11,955.6 | 04 | 06 | 02 | 03 |  |
| HAL-P-DL-EN-150 |  | Washout valve | 7d | 2026-08-02 A | 2026-08-02 A | HAL-P-MF-EN-150 | 100% | 2026-08-13 | 2026-08-20 | Unloading workers [224 h]; Construction Cost [6804] | 6,804 | 6,804 | 04 | 06 | 02 | 03 |  |
| HAL-P-DL-EN-160 |  | Gate valve | 7d | 2026-08-02 A | 2026-08-02 A | HAL-P-MF-EN-160 | 100% | 2026-08-13 | 2026-08-20 | Unloading workers [224 h]; Construction Cost [2430] | 2,430 | 2,430 | 04 | 06 | 02 | 03 |  |
|  | 3 | **STAGING TIME** |  | 2026-03-01 | 2026-08-02 |  |  |  |  |  |  |  |  |  |  |  |  |
| HAL-P-ST-EN-100 |  | HDPE pipes for fire system | 7d | 2026-03-01 A | 2026-03-01 A | HAL-P-DL-EN-100 | 100% | 2026-08-16 | 2026-08-23 |  |  |  | 04 | 06 | 02 | 04 |  |
| HAL-P-ST-EN-120 |  | HDPE pipes for water supply system | 7d | 2026-03-01 A | 2026-03-01 A | HAL-P-DL-EN-120 | 100% | 2026-08-27 | 2026-09-03 |  |  |  | 04 | 06 | 02 | 04 |  |
| HAL-P-ST-EN-170 |  | GRP pipes | 7d | 2026-03-01 A | 2026-03-01 A | HAL-P-DL-EN-170 | 100% | 2026-09-26 | 2026-10-04 |  |  |  | 04 | 06 | 02 | 04 |  |
| HAL-P-ST-EN-140 |  | Air valve | 7d | 2026-05-13 A | 2026-05-13 A | HAL-P-DL-EN-140 | 100% | 2026-09-30 | 2026-10-08 |  |  |  | 04 | 06 | 02 | 04 |  |
| HAL-P-ST-EN-110 |  | Directly buried gate valve for fire system | 7d | 2026-08-02 A | 2026-08-02 A | HAL-P-DL-EN-110 | 100% | 2026-08-22 | 2026-08-29 |  |  |  | 04 | 06 | 02 | 04 |  |
| HAL-P-ST-EN-130 |  | Directly buried gate valve for water system | 7d | 2026-08-02 A | 2026-08-02 A | HAL-P-DL-EN-130, HAL-P-ST-EN-110 | 100% | 2026-08-30 | 2026-09-06 |  |  |  | 04 | 06 | 02 | 04 |  |
| HAL-P-ST-EN-150 |  | Washout valve | 7d | 2026-08-02 A | 2026-08-02 A | HAL-P-DL-EN-150 | 100% | 2026-08-22 | 2026-08-29 |  |  |  | 04 | 06 | 02 | 04 |  |
| HAL-P-ST-EN-160 |  | Gate valve | 7d | 2026-08-02 A | 2026-08-02 A | HAL-P-DL-EN-160 | 100% | 2026-08-22 | 2026-08-29 |  |  |  | 04 | 06 | 02 | 04 |  |

| ID | WBS | Activity | Duration | Start | Finish | Predecessors | Complete | Planned start | Planned finish | Resources | Cost | Actual cost | 00 Activity ID | Zone # | Phasing Code Category | Discipline | AMH Tender Act. ID | Tender Original Duration | Remarks | Project component code |
| --- | --- | --- | --- | --- | --- | --- | --- | --- | --- | --- | --- | --- | --- | --- | --- | --- | --- | --- | --- | --- |
|  | 5 | **CONSTRUCTION (60%)** |  | 2025-12-22 | 2026-11-02 |  |  |  |  |  |  |  |  |  |  |  |  |  |  |  |
|  | 1 | **RBF 900 SQM FACTORIES** |  | 2025-12-22 | 2026-10-28 |  |  |  |  |  |  |  |  |  |  |  |  |  |  |  |
|  | 2 | **SITE WORKS** |  | 2025-12-22 | 2026-09-24 |  |  |  |  |  |  |  |  |  |  |  |  |  |  |  |
| HAL-C-GEN-10 |  | Initial Site Survey and Setting out | 10d | 2025-12-22 A | 2025-12-25 A | HAL-MOB-SO.0016 | 100% | 2025-12-31 | 2026-01-11 | General Labour [160 h]; Surveyor [160 h]; Construction Cost |  |  | H1.C.X0.00.SW.X.2010 | 1 | 05 | 06 |  |  |  |  |
| HAL-C-GEN-77 |  | Excavation to the target grading level | 7d | 2025-12-27 A | 2026-01-31 A | HAL-C-GEN-10, HAL-PMS-DMS-2360 | 100% | 2026-01-12 | 2026-01-19 | General Labour [112 h]; Equipment Operator [112 h]; Truck [56 h]; Excavator [56 h]; Mini Roller Compactor [56 h]; Construction Cost [99312.5] | 99,312.46 | 99,312.46 | H1.C.K1.00.SW.F.1010 | 1 | 05 | 06 | PH1-MHR-ST-640 | 12 |  |  |
| HAL-C-GEN-1440 |  | Relocating of existing Tress | 5d | 2026-01-18 A | 2026-01-21 A | HAL-C-GEN-99 | 100% | 2026-03-29 | 2026-04-04 | Construction Cost [2211.78]; Helper [80 h] | 2,211.78 | 2,211.78 |  | 1 | 05 | 06 |  |  |  |  |
| HAL-C-GEN-99 |  | Demolition of existing structure | 14.12d | 2026-04-09 A | 2026-04-11 A | HAL-C-GEN-88 | 100% | 2026-04-27 | 2026-05-13 | Construction Cost [11058.9]; POKLIN [120 h]; Truck [120 h]; Wheel Loader [120 h]; Helper [240 h]; Equipment Operator [240 h] | 11,058.89 | 11,058.89 |  |  | 05 | 06 |  |  |  |  |
| HAL-C-GEN-88 |  | Demolition of existing curbstone,side walk & steel fence | 12d | 2026-06-17 A | 2026-06-20 A | HAL-C-GEN-10 | 100% | 2026-06-20 | 2026-07-02 | Construction Cost [12277.8]; Helper [192 h]; Equipment Operator [192 h]; Wheel Loader [96 h]; Truck [96 h]; POKLIN [96 h] | 12,277.82 | 12,277.82 |  |  | 05 | 06 |  |  | 1 |  |
| HAL-C-GEN-78 |  | Backfilling to reach target level | 5d | 2026-08-22 A | 2026-08-29 A | HAL-C-GEN-77, HAL-C-GEN-180, HAL-MOB-SO.0020 | 100% | 2026-08-31 | 2026-09-05 | General Labour [80 h]; Equipment Operator [80 h]; Motor Grader [40 h]; Roller Compactor [40 h]; Truck [40 h]; Construction Cost [18171] | 18,170.97 | 18,170.97 | H1.C.K1.00.SW.F.1010 | 1 | 05 | 06 | PH1-MHR-ST-640 | 12 | 1 |  |
| HAL-C-GEN-620 |  | Block Wall | 10d | 2026-09-22 A | 2026-09-24 A | HAL-C-GEN-1440 | 100% | 2026-09-28 | 2026-10-08 | Mason [160 h]; Construction Cost [8979.81] | 8,979.81 | 8,979.81 |  | 1 | 05 | 06 |  |  | 1 |  |
|  | 4 | **BLOCK B** |  | 2025-12-28 | 2026-10-28 |  |  |  |  |  |  |  |  |  |  |  |  |  |  |  |
|  | 1 | **STRUCTURAL** |  | 2025-12-28 | 2026-07-16 |  |  |  |  |  |  |  |  |  |  |  |  |  |  |  |
|  | 1 | **FOOTING** |  | 2025-12-28 | 2026-01-28 |  |  |  |  |  |  |  |  |  |  |  |  |  |  |  |
| HAL-C-B-S-160 |  | Excavation for footings | 7d | 2025-12-28 A | 2026-01-07 A | HAL-C-GEN-78, HAL-C-GEN-88, HAL-E-SA-C-750, HAL-E-SA-R-730, HAL-E-SA-R-740, HAL-E-SA-R-750, HAL-E-SA-R-760, HAL-E-SA-R-770, HAL-E-SA-R-780, HAL-PRE-SUB-1015, HAL-PRE-SUB-1014, HAL-PRE-SUB-1013 | 100% | 2026-01-26 | 2026-02-02 | General Labour [112 h]; Equipment Operator [112 h]; Truck [56 h]; Excavator [56 h]; Mini Roller Compactor [56 h]; Construction Cost [66496.4] | 66,496.45 | 66,496.45 | H1.C.K1.00.SW.F.1010 | 1 | 05 | 01 | PH1-MHR-ST-640 | 12 |  | 02 |
| HAL-C-B-S-777 |  | Anti Termite Below Footings | 1d | 2026-01-10 A | 2026-01-10 A | HAL-C-B-S-160, HAL-P-ST-C-50 | 100% | 2026-01-28 | 2026-01-29 | Mason [16 h]; Construction Cost [8441.61] | 8,441.61 | 8,441.61 | H1.C.K1.00.SW.F.1030 | 1 | 05 | 01 | PH1-MHR-ST-1020 | 10 |  | 02 |
| HAL-C-B-S-537 |  | Lean Concrete Below Footings | 2d | 2026-01-11 A | 2026-01-11 A | HAL-C-B-S-687, HAL-P-ST-C-60, HAL-E-SA-R-790, HAL-E-SA-R-800, HAL-E-SA-R-810, HAL-E-SA-R-820 | 100% | 2026-02-10 | 2026-02-11 | Mason [32 h]; Construction Cost [8238.87] | 8,238.87 | 8,238.87 | H1.C.K1.00.SW.F.1030 | 1 | 05 | 01 | PH1-MHR-ST-1020 | 10 |  | 02 |
| HAL-C-B-S-687 |  | Vapour Barrier for Footings | 1d | 2026-01-11 A | 2026-01-11 A | HAL-C-B-S-777, HAL-P-ST-C-70 | 100% | 2026-01-29 | 2026-01-31 | General Labour [16 h]; Construction Cost [6030.16] | 6,030.16 | 6,030.16 | H1.C.K1.00.SW.F.1040 | 1 | 05 | 01 | PH1-MHR-ST-1080 | 15 |  | 02 |
| HAL-C-B-S-597 |  | Formwork for Footings | 3.5d | 2026-01-13 A | 2026-01-21 A | HAL-C-B-S-587 | 100% | 2026-02-23 | 2026-02-26 | Carperter [64 h]; Construction Cost [23267.9] | 23,267.89 | 23,267.89 |  | 1 | 05 | 01 |  |  |  | 02 |
| HAL-C-B-S-587 |  | Rebar for Footings | 4d | 2026-01-20 A | 2026-01-27 A | HAL-C-B-S-537, HAL-E-MT-C-2010, HAL-P-ST-C-90 | 100% | 2026-02-24 | 2026-03-02 | Steel Fixer [64 h]; Construction Cost [93071.6] | 93,071.56 | 93,071.56 |  | 1 | 05 | 01 |  |  |  | 02 |
| HAL-C-B-S-547 |  | Pouring Concrete for Footings | 1d | 2026-01-28 A | 2026-01-28 A | HAL-C-B-S-597 | 100% | 2026-02-23 | 2026-02-24 | Carperter [16 h]; Mason [16 h]; Steel Fixer [16 h]; Concrete Mixer [8 h]; Equipment Operator [16 h]; Construction Cost [116339] | 116,339.45 | 116,339.45 | H1.C.K1.00.RC.F.1010 | 1 | 05 | 01 | PH1-MHR-ST-1030 | 21 |  | 02 |
|  | 2 | **COLUMN NECK** |  | 2026-01-29 | 2026-04-06 |  |  |  |  |  |  |  |  |  |  |  |  |  |  |  |
| HAL-C-B-S-637 |  | Rebar for column neck | 2d | 2026-01-29 A | 2026-02-03 A | HAL-C-B-S-547, HAL-E-SA-R-830, HAL-E-SA-R-840, HAL-E-SA-R-850, HAL-E-SA-R-860, HAL-E-SA-R-870, HAL-E-SA-R-880, HAL-E-SA-R-890, HAL-E-SA-R-900 | 100% | 2026-02-25 | 2026-03-01 | Steel Fixer [32 h]; Construction Cost [21993.7] | 21,993.66 | 21,993.66 |  | 1 | 05 | 01 |  |  |  | 02 |
| HAL-C-B-S-647 |  | Formwork for column neck | 2d | 2026-02-03 A | 2026-02-05 A | HAL-C-B-S-637, HAL-E-MT-C-2010, HAL-E-SA-M-600, HAL-E-SA-M-610, HAL-E-SA-M-620, HAL-E-SA-M-630, HAL-E-SA-M-640, HAL-E-SA-A-830, HAL-E-SA-A-840, HAL-E-SA-A-850, HAL-E-SA-A-860, HAL-E-SA-A-1170, HAL-E-SA-A-870, HAL-E-SA-A-880, HAL-E-SA-A-890, HAL-E-SA-C-840, HAL-E-SA-C-850, HAL-E-SA-C-860, HAL-E-SA-C-870, HAL-E-SA-C-880, HAL-E-SA-C-890, HAL-E-SA-C-750, HAL-E-SA-C-760, HAL-E-SA-C-770, HAL-E-SA-C-780, HAL-E-SA-C-790, HAL-E-SA-C-800, HAL-E-SA-C-810, HAL-E-SA-C-820, HAL-E-SA-C-830 | 100% | 2026-03-02 | 2026-03-04 | Carperter [32 h]; Construction Cost [5498.72] | 5,498.72 | 5,498.72 |  | 1 | 05 | 01 |  |  |  | 02 |
| HAL-C-B-S-677 |  | Damp proof /Bitumin paint on Footings & column neck | 2d | 2026-02-07 A | 2026-03-03 A | HAL-C-B-S-627, HAL-P-ST-C-80 | 100% | 2026-03-05 | 2026-03-08 | Painter [32 h]; Construction Cost [6903.81] | 6,903.81 | 6,903.81 | H1.C.K1.00.SW.F.1050 | 1 | 05 | 01 | PH1-MHR-ST-1080 | 15 |  | 02 |
| HAL-C-B-S-627 |  | Pouring Concrete for column neck | 1d | 2026-02-10 A | 2026-03-02 A | HAL-C-B-S-647 | 100% | 2026-03-04 | 2026-03-05 | Mason [16 h]; Carperter [16 h]; Concrete Mixer [8 h]; Steel Fixer [16 h]; Equipment Operator [16 h]; Construction Cost [27492.4] | 27,492.39 | 27,492.39 | H1.C.K1.00.RC.F.1110 | 1 | 05 | 01 | PH1-MHR-ST-1030 | 21 |  | 02 |
| HAL-C-B-S-737 |  | Backfilling / Compaction up to Bottom of Grade Beams | 14d | 2026-02-14 A | 2026-04-06 A | HAL-C-B-S-677, HAL-E-SA-EX-690, HAL-E-SA-EX-700, HAL-E-SA-EX-710, HAL-E-SA-EX-720, HAL-E-SA-EX-730, HAL-E-SA-EX-740, HAL-E-SA-EX-750, HAL-E-SA-EX-760, HAL-E-SA-EX-770, HAL-E-SA-EX-780 | 100% | 2026-03-05 | 2026-03-23 | General Labour [256 h]; Truck [128 h]; Mini Roller Compactor [128 h]; Equipment Operator [256 h]; Wheel Loader [128 h]; Construction Cost [32707.9] | 32,707.87 | 32,707.87 | H1.C.K1.00.SW.F.1060 | 1 | 05 | 01 | PH1-MHR-ST-645 | 15 |  | 02 |

| ID | WBS | Activity | Duration | Start | Finish | Predecessors | Complete | Planned start | Planned finish | Resources | Cost | Actual cost | 00 Activity ID | AMH Tender Act. ID | Tender Original Duration | Zone # | Phasing Code Category | Discipline | Project component code | project summary-6 | PS (su & rbf)-6 | New code for weekly report-6 | New discipline code-6 |
| --- | --- | --- | --- | --- | --- | --- | --- | --- | --- | --- | --- | --- | --- | --- | --- | --- | --- | --- | --- | --- | --- | --- | --- |
|  | 3 | **GRADE BEAM** |  | 2026-04-14 | 2026-05-07 |  |  |  |  |  |  |  |  |  |  |  |  |  |  |  |  |  |  |
| HAL-C-B-S-557 |  | Lean Concrete Below Grade Beams | 2d | 2026-04-14 A | 2026-04-14 A | HAL-C-B-S-707, HAL-E-MT-E-2040, HAL-E-SA-R-910, HAL-E-SA-R-920, HAL-E-SA-R-930, HAL-E-SA-R-940, HAL-E-SA-R-950, HAL-E-SA-R-960 | 100% | 2026-06-08 | 2026-06-10 | Mason [32 h]; Construction Cost [8238.87] | 8,238.87 | 8,238.87 | H1.C.K1.00.SW.F.1130 | PH1-MHR-ST-1020 | 10 | 1 | 05 | 01 | 02 |  |  |  |  |
| HAL-C-B-S-707 |  | Vapour barrier for Grade Beams | 2d | 2026-04-14 A | 2026-04-14 A | HAL-C-B-S-787 | 100% | 2026-05-05 | 2026-05-06 | General Labour [32 h]; Construction Cost [4019.9] | 4,019.9 | 4,019.9 | H1.C.K1.00.SW.F.1040 | PH1-MHR-ST-1080 | 15 | 1 | 05 | 01 | 02 |  |  |  |  |
| HAL-C-B-S-787 |  | Anti Termite Below Grade Beams | 1d | 2026-04-14 A | 2026-04-14 A | HAL-C-B-S-737, HAL-E-SA-C-760, HAL-E-SA-E-940, HAL-E-SA-E-950, HAL-E-SA-E-960, HAL-E-SA-E-970, HAL-E-SA-E-980, HAL-E-SA-E-990, HAL-E-SA-E-1000, HAL-E-SA-E-1010, HAL-E-SA-E-1020, HAL-E-SA-E-1030, HAL-E-SA-E-1040, HAL-E-SA-M-650, HAL-E-SA-M-660, HAL-E-SA-M-670, HAL-E-SA-M-680, HAL-E-SA-M-690, HAL-E-SA-M-700, HAL-E-SA-M-710, HAL-E-SA-A-900, HAL-E-SA-A-910, HAL-E-SA-A-920, HAL-E-SA-A-930, HAL-E-SA-A-940, HAL-E-SA-A-950, HAL-E-SA-A-960 | 100% | 2026-05-04 | 2026-05-04 | Mason [16 h]; Construction Cost [8441.61] | 8,441.61 | 8,441.61 | H1.C.K1.00.SW.F.1030 | PH1-MHR-ST-1020 | 10 | 1 | 05 | 01 | 02 |  |  |  |  |
| HAL-C-B-S-607 |  | Rebar for Grade Beams | 5d | 2026-04-15 A | 2026-04-29 A | HAL-C-B-S-557, HAL-E-SA-C-860, HAL-E-SA-C-870 | 100% | 2026-06-10 | 2026-06-16 | Steel Fixer [80 h]; Construction Cost [24993.1] | 24,993.07 | 24,993.07 |  |  |  | 1 | 05 | 01 | 02 |  |  |  |  |
| HAL-C-B-S-617 |  | Formwork for Grade Beams | 2d | 2026-04-15 A | 2026-04-29 A | HAL-C-B-S-607, HAL-E-SA-EX-790, HAL-E-SA-EX-800, HAL-E-SA-EX-830, HAL-E-SA-EX-840, HAL-E-SA-EX-810, HAL-E-SA-EX-850, HAL-E-SA-EX-820, HAL-E-SA-EX-860, HAL-E-SA-EX-870, HAL-E-SA-EX-880, HAL-E-SA-EX-890 | 100% | 2026-06-16 | 2026-06-18 | Carperter [32 h]; Construction Cost [6248.27] | 6,248.27 | 6,248.27 |  |  |  | 1 | 05 | 01 | 02 |  |  |  |  |
| HAL-C-B-S-767 |  | Anchor bolts installation | 2d | 2026-04-25 A | 2026-04-29 A | HAL-C-B-S-617 SS, HAL-E-SA-C-770, HAL-E-SA-C-850 | 100% | 2026-06-16 | 2026-06-18 | Carperter [32 h]; Construction Cost [5667.68] | 5,667.68 | 5,667.68 |  |  |  | 1 | 05 | 01 | 02 |  |  |  |  |
| HAL-C-B-S-567 |  | Pouring Concrete for Grade Beams | 1d | 2026-04-29 A | 2026-04-29 A | HAL-C-B-S-617, HAL-C-B-S-767 | 100% | 2026-06-23 | 2026-06-24 | Mason [16 h]; Carperter [16 h]; Concrete Mixer [8 h]; Steel Fixer [16 h]; Equipment Operator [16 h]; Construction Cost [31241.3] | 31,241.35 | 31,241.35 | H1.C.K1.00.RC.F.1110 | PH1-MHR-ST-1030 | 21 | 1 | 05 | 01 | 02 |  |  |  |  |
| HAL-C-B-S-717 |  | Damp proof /Bitumin paint on Grade Beams | 2d | 2026-05-06 A | 2026-05-07 A | HAL-C-B-S-567 | 100% | 2026-06-29 | 2026-07-01 | Painter [32 h]; Construction Cost [6903.81] | 6,903.81 | 6,903.81 | H1.C.K1.00.SW.F.1050 | PH1-MHR-ST-1080 | 15 | 1 | 05 | 01 | 02 |  |  |  |  |
|  | 5 | **SLAB ON GRADE** |  | 2026-05-09 | 2026-06-20 |  |  |  |  |  |  |  |  |  |  |  |  |  |  |  |  |  |  |
| HAL-C-B-S-747 |  | Backfilling / Compaction for Slab on Grade | 12d | 2026-05-09 A | 2026-05-20 A | HAL-C-B-S-717, HAL-E-SA-E-1050, HAL-E-SA-E-1060, HAL-E-SA-E-1070, HAL-E-SA-E-1080, HAL-E-SA-E-1090, HAL-E-SA-E-1100, HAL-E-SA-E-1110, HAL-E-SA-M-720, HAL-E-SA-M-730, HAL-E-SA-M-740, HAL-E-SA-M-750, HAL-E-SA-M-760, HAL-E-SA-M-770, HAL-E-SA-M-780, HAL-E-SA-M-790, HAL-E-SA-M-800 | 100% | 2026-07-01 | 2026-07-15 | Mini Roller Compactor [128 h]; General Labour [256 h]; Equipment Operator [256 h]; Wheel Loader [128 h]; Truck [128 h]; Construction Cost [32707.9] | 32,707.87 | 32,707.87 |  |  |  | 1 | 05 | 01 | 02 |  |  |  |  |
| HAL-C-B-S-577 |  | Pouring Concrete for Ground Slab | 4d | 2026-06-01 A | 2026-06-04 A | HAL-C-B-S-727 | 100% | 2026-07-14 | 2026-07-19 | Mason [64 h]; Carperter [64 h]; Steel Fixer [64 h]; Concrete Mixer [32 h]; Equipment Operator [64 h]; Construction Cost [304092] | 304,091.64 | 304,091.64 | H1.C.A1.06.RC.G.1210 | PH1-MHR-ST-496 | 24 | 1 | 05 | 01 | 02 |  |  |  |  |
| HAL-C-B-S-697 |  | Anti Termite Treatment below Ground Slab | 1d | 2026-06-01 A | 2026-06-04 A | HAL-C-B-S-747, HAL-C-B-S-747 FF, HAL-E-MT-ENV-2060, HAL-E-SA-E-1120, HAL-E-SA-E-1130, HAL-E-SA-E-1140, HAL-E-SA-E-1150, HAL-E-SA-E-1160, HAL-E-SA-E-1170, HAL-E-SA-E-1180 | 100% | 2026-07-11 | 2026-07-12 | General Labour [16 h]; Construction Cost [11255.5] | 11,255.49 | 11,255.49 | H1.C.A1.06.SW.F.1220 | PH1-MHR-ST-645 | 15 | 1 | 05 | 01 | 02 |  |  |  |  |
| HAL-C-B-S-727 |  | Vapour barrier for below Ground Slab | 2d | 2026-06-01 A | 2026-06-04 A | HAL-C-B-S-697 | 100% | 2026-08-15 | 2026-08-17 | General Labour [32 h]; Construction Cost [10050.1] | 10,050.07 | 10,050.07 |  |  |  | 1 | 05 | 01 | 02 |  |  |  |  |
| HAL-C-B-S-757 |  | Concrete pad | 7d | 2026-06-17 A | 2026-06-20 A | HAL-C-B-A-200 | 100% | 2026-08-25 | 2026-09-02 | Mason [224 h]; Construction Cost [1803.82] | 1,803.82 | 1,803.82 |  |  |  |  | 05 | 01 | 02 |  |  |  |  |
|  | 4 | **COLUMNS & BEAMS** |  | 2026-02-28 | 2026-07-16 |  |  |  |  |  |  |  |  |  |  |  |  |  |  |  |  |  |  |
| HAL-C-B-S-6101 |  | Rebar for Tie Beams | 4d | 2026-02-28 A | 2026-03-02 A | HAL-C-B-S-5103, HAL-E-SA-C-780 | 100% | 2026-07-20 | 2026-07-25 | Steel Fixer [64 h]; Construction Cost [7796.52] | 7,796.52 | 7,796.52 |  |  |  | 1 | 05 | 01 | 02 | 3 | 1 | 4 | 1 |
| HAL-C-B-S-6102 |  | Formwork for Tie Beams | 2d | 2026-03-02 A | 2026-03-04 A | HAL-C-B-S-6101 | 100% | 2026-07-25 | 2026-07-27 | Carperter [32 h]; Construction Cost [1949.44] | 1,949.44 | 1,949.44 |  |  |  | 1 | 05 | 01 | 02 | 3 | 1 | 4 | 1 |
| HAL-C-B-S-6103 |  | Pouring Concrete for Tie Beams | 1d | 2026-03-05 A | 2026-03-05 A | HAL-C-B-S-6102 | 100% | 2026-07-27 | 2026-07-28 | Mason [16 h]; Carperter [16 h]; Concrete Mixer [8 h]; Steel Fixer [16 h]; Equipment Operator [16 h]; Construction Cost [9745.95] | 9,745.95 | 9,745.95 | H1.C.K1.00.RC.F.1110 | PH1-MHR-ST-1030 | 21 | 1 | 05 | 01 | 02 | 3 | 1 | 4 | 1 |
| HAL-C-B-S-5101 |  | Rebar for column | 7d | 2026-06-01 A | 2026-06-04 A | HAL-C-B-S-747, HAL-E-SA-C-820, HAL-C-B-M-510 | 100% | 2026-07-02 | 2026-07-11 | Steel Fixer [112 h]; Construction Cost [18494.8] | 18,494.75 | 18,494.75 |  |  |  | 1 | 05 | 01 | 02 | 3 | 1 | 4 | 1 |
| HAL-C-B-S-5102 |  | Formwork for column | 4d | 2026-06-09 A | 2026-06-11 A | HAL-C-B-S-5101, HAL-E-SA-EX-1050 | 100% | 2026-07-12 | 2026-07-16 | Carperter [64 h]; Construction Cost [4623.84] | 4,623.84 | 4,623.84 |  |  |  | 1 | 05 | 01 | 02 | 3 | 1 | 4 | 1 |
| HAL-C-B-S-5103 |  | Pouring Concrete for column | 1d | 2026-06-13 A | 2026-06-13 A | HAL-C-B-S-5102 | 100% | 2026-07-16 | 2026-07-18 | Mason [16 h]; Carperter [16 h]; Concrete Mixer [8 h]; Steel Fixer [16 h]; Equipment Operator [16 h]; Construction Cost [23118.6] | 23,118.59 | 23,118.59 | H1.C.K1.00.RC.F.1110 | PH1-MHR-ST-1030 | 21 | 1 | 05 | 01 | 02 | 3 | 1 | 4 | 1 |
| HAL-C-B-S-6113 |  | Rebar for Beams | 4d | 2026-07-08 A | 2026-07-16 A | HAL-C-B-S-6103, HAL-E-SA-C-830, HAL-E-SA-C-840 | 100% | 2026-07-19 | 2026-07-22 | Steel Fixer [64 h]; Construction Cost [11954.6] | 11,954.65 | 11,954.65 |  |  |  | 1 | 05 | 01 | 02 | 3 | 1 | 4 | 1 |
| HAL-C-B-S-6123 |  | Formwork for Beams | 2d | 2026-07-08 A | 2026-07-16 A | HAL-C-B-S-6113, HAL-C-B-S-6113 FF | 100% | 2026-07-23 | 2026-07-25 | Carperter [32 h]; Construction Cost [2988.97] | 2,988.97 | 2,988.97 |  |  |  | 1 | 05 | 01 | 02 | 3 | 1 | 4 | 1 |
| HAL-C-B-S-6133 |  | Pouring Concrete for Beams | 1d | 2026-07-11 A | 2026-07-16 A | HAL-C-B-S-6123, HAL-C-B-S-6123 FF | 100% | 2026-07-26 | 2026-07-26 | Mason [16 h]; Carperter [16 h]; Concrete Mixer [8 h]; Steel Fixer [16 h]; Equipment Operator [16 h]; Construction Cost [14943.6] | 14,943.63 | 14,943.63 | H1.C.K1.00.RC.F.1110 | PH1-MHR-ST-1030 | 21 | 1 | 05 | 01 | 02 | 3 | 1 | 4 | 1 |

| ID | WBS | Activity | Duration | Start | Finish | Predecessors | Complete | Planned start | Planned finish | Resources | Cost | Actual cost | Remarks | Phasing Code Category | Discipline | Project component code | 00 Activity ID | Zone # |
| --- | --- | --- | --- | --- | --- | --- | --- | --- | --- | --- | --- | --- | --- | --- | --- | --- | --- | --- |
|  | 5 | **STRUCTURAL STEEL** |  | 2026-05-16 | 2026-08-15 |  |  |  |  |  |  |  |  |  |  |  |  |  |
| HAL-C-B-SS-150 |  | Installation of columns | 3d | 2026-05-16 A | 2026-05-20 A | HAL-E-SA-C-790, HAL-E-ST-A-1700, HAL-C-B-S-717 | 100% | 2026-06-17 | 2026-06-21 | Structural Steel Fixer [80 h]; General Labour [80 h]; Equipment Operator [80 h]; Mobile Crane [40 h]; Construction Cost [164363] | 164,362.65 | 164,362.65 | 15 | 05 | 08 | 02 |  |  |
| HAL-C-B-SS-160 |  | Installation of raft and purlins | 5d | 2026-05-16 A | 2026-05-20 A | HAL-C-B-SS-150, HAL-E-SA-C-800 | 100% | 2026-06-21 | 2026-06-27 | Structural Steel Fixer [160 h]; General Labour [160 h]; Mobile Crane [80 h]; Equipment Operator [160 h]; Construction Cost [340061] | 340,060.66 | 340,060.66 | 15 | 05 | 08 | 02 |  |  |
| HAL-C-A1-SS-1030 |  | Steel members for external platform | 5d | 2026-05-25 A | 2026-05-31 A | HAL-C-B-SS-1030 | 100% | 2026-07-04 | 2026-07-09 | Construction Cost [27249.1]; General Labour [112 h]; Mobile Crane [56 h]; Structural Steel Fixer [112 h]; Equipment Operator [112 h] | 27,249.09 | 27,249.09 |  | 05 | 08 | 02 | H1.C.A1.SA.FI.G.0730 | 1 |
| HAL-C-B-SS-1030 |  | Steel members for office area | 5d | 2026-05-25 A | 2026-05-31 A | HAL-C-B-SS-160 | 100% | 2026-06-28 | 2026-07-04 | Construction Cost [97318.2]; Equipment Operator [112 h]; General Labour [112 h]; Mobile Crane [56 h]; Structural Steel Fixer [112 h] | 97,318.17 | 97,318.17 |  | 05 | 08 | 02 | H1.C.A1.SA.FI.G.0730 | 1 |
| HAL-C-B-SS-1020 |  | Intumescent paint to steel works | 5d | 2026-06-13 A | 2026-06-22 A | HAL-C-B-S-747, HAL-E-ST-A-1700, HAL-C-B-SS-160 | 100% | 2026-07-12 | 2026-07-18 | Painter [112 h]; Construction Cost [269284] | 269,283.81 | 269,283.81 | 1 | 05 | 08 | 02 | H1.C.A1.SA.FI.G.0730 | 1 |
| HAL-C-B-SS-190 |  | Installation of roof sheet | 7d | 2026-06-22 A | 2026-06-30 A | HAL-C-B-A-170, HAL-C-B-SS-1020, HAL-C-B-S-6133, HAL-E-SA-C-810 | 100% | 2026-08-09 | 2026-08-17 | Roof sheet worker [160 h]; General Labour [160 h]; Mobile Crane [80 h]; Equipment Operator [160 h]; Construction Cost [453414] | 453,414.21 | 453,414.21 | 15 | 05 | 08 | 02 |  |  |
| HAL-C-A1-SS-1040 |  | Epoxy paint for external platform | 5d | 2026-07-28 A | 2026-07-30 A | HAL-C-A1-SS-1030 | 100% | 2026-08-09 | 2026-08-13 | Painter [80 h]; Construction Cost [6812.27] | 6,812.27 | 6,812.27 |  | 05 | 08 | 02 | H1.C.A1.SA.FI.G.0730 | 1 |
| HAL-C-B-SS-180 |  | Installation of wall sandwich panel | 5d | 2026-08-01 A | 2026-08-13 A | HAL-C-B-A-200 | 100% | 2026-08-15 | 2026-08-19 | Sandwich panel worker [112 h]; General Labour [112 h]; Mobile Crane [56 h]; Equipment Operator [112 h]; Construction Cost [170030] | 170,030.33 | 170,030.33 | 15 | 05 | 08 | 02 |  |  |
| HAL-C-A1-SS-1020 |  | Epoxy paint to steel members at office area | 5d | 2026-08-13 A | 2026-08-15 A | HAL-C-B-SS-1030 | 100% | 2026-08-23 | 2026-08-27 | Painter [112 h]; Construction Cost [24329.5] | 24,329.54 | 24,329.54 |  | 05 | 08 | 02 | H1.C.A1.SA.FI.G.0730 | 1 |
|  | 2 | **ARCHITECTURAL** |  | 2026-06-17 | 2026-10-28 |  |  |  |  |  |  |  |  |  |  |  |  |  |
|  | 1 | **MASONARY WORKS** |  | 2026-06-17 | 2026-07-05 |  |  |  |  |  |  |  |  |  |  |  |  |  |
| HAL-C-B-A-170 |  | Block work at factory area | 10d | 2026-06-17 A | 2026-07-05 A | HAL-C-B-S-577, HAL-C-B-SS-160, HAL-E-SA-A-830, HAL-E-SA-A-840, HAL-E-SA-A-860, HAL-E-SA-A-870, HAL-E-MT-A-2020, HAL-P-ST-A-200, HAL-C-A1-SS-1040, HAL-C-A1-SS-1020, HAL-P-ST-E-370 | 100% | 2026-07-28 | 2026-08-09 | AAC panel erector [240 h]; General Labour [240 h]; Equipment Operator [240 h]; Mobile Crane [120 h]; Construction Cost [38856.6] | 38,856.62 | 38,856.62 |  | 05 | 02 | 02 |  |  |
| HAL-C-B-A-200 |  | Block work at office area | 7d | 2026-06-17 A | 2026-07-05 A | HAL-C-B-A-170, HAL-C-B-SS-190, HAL-C-B-SS-1030 | 100% | 2026-08-17 | 2026-08-25 | AAC panel erector [160 h]; General Labour [160 h]; Mobile Crane [80 h]; Equipment Operator [160 h]; Construction Cost [9714] | 9,714 | 9,714 |  | 05 | 02 | 02 |  |  |
| HAL-C-B-A-620 |  | Block work at toilet area | 7d | 2026-06-17 A | 2026-07-05 A | HAL-C-B-A-200, HAL-P-ST-E-320 | 100% | 2026-08-25 | 2026-09-02 | Mason [112 h]; Construction Cost [15836.3] | 15,836.32 | 15,836.32 |  | 05 | 02 | 02 |  | 1 |
|  | 5 | **WALL FINISHES** |  | 2026-08-02 | 2026-10-25 |  |  |  |  |  |  |  |  |  |  |  |  |  |
| HAL-C-B-A-630 |  | Internal Wall Plaster | 15d | 2026-08-02 A | 2026-08-13 A | HAL-C-B-A-620, HAL-C-B-E-413, HAL-E-SA-A-1170, HAL-E-SA-A-880, HAL-C-B-S-757, HAL-P-ST-E-350, HAL-P-ST-E-340 | 100% | 2026-08-16 | 2026-09-02 | Mason [240 h]; Construction Cost [29610.2] | 29,610.16 | 29,610.16 |  | 05 | 02 | 02 | H1.C.A1.SA.FI.G.0710 | 1 |
| HAL-C-B-A-680 |  | Paint to Plaster (Primer, Putty & First Coat) | 7d | 2026-08-25 A | 2026-10-25 A | HAL-C-B-A-700, HAL-P-ST-A-320 | 100% | 2026-10-13 | 2026-10-20 | Painter [112 h]; Construction Cost [26649.5] | 26,649.45 | 26,649.45 |  | 05 | 02 | 02 | H1.C.A1.SA.FI.G.0730 | 1 |
|  | 2 | **CIELING FINISHES** |  | 2026-09-19 | 2026-09-24 |  |  |  |  |  |  |  |  |  |  |  |  |  |
| HAL-C-B-A-690 |  | Installation of Ceiling Gypsum Board | 5d | 2026-09-19 A | 2026-09-24 A | HAL-C-B-A-670, HAL-C-B-S-757, HAL-E-SA-A-890, HAL-P-ST-A-330 | 100% | 2026-10-20 | 2026-10-25 | Carperter [80 h]; Construction Cost [44650.2] | 44,650.24 | 44,650.24 |  | 05 | 02 | 02 | H1.C.A1.SA.FI.G.0820 | 1 |
|  | 6 | **FLOOR FINISHES** |  | 2026-09-08 | 2026-10-15 |  |  |  |  |  |  |  |  |  |  |  |  |  |
| HAL-C-B-A-700 |  | Tiles for Office Area | 2d | 2026-09-08 A | 2026-09-10 A | HAL-C-B-A-690, HAL-P-ST-M-3410, HAL-P-ST-M-560, HAL-P-ST-M-420 | 100% | 2026-10-15 | 2026-10-17 | Tile Fixer [32 h]; Construction Cost [25626.5] | 25,626.5 | 25,626.5 |  | 05 | 02 | 02 |  |  |
| HAL-C-B-A-670 |  | Tiles for Toilet | 7d | 2026-09-22 A | 2026-09-24 A | HAL-C-B-A-810, HAL-E-SA-A-900, HAL-E-SA-A-910, HAL-P-ST-A-280, HAL-P-ST-E-330, HAL-P-ST-E-300, HAL-P-ST-E-290 | 100% | 2026-10-18 | 2026-10-25 | Tile Fixer [112 h]; Construction Cost [48089.6] | 48,089.55 | 48,089.55 |  | 05 | 02 | 02 | H1.C.A1.SA.FI.G.0640 | 1 |
| HAL-C-B-A-830 |  | Granite strip | 2d | 2026-09-22 A | 2026-09-24 A | HAL-C-B-A-700, HAL-P-ST-A-290, HAL-P-ST-M-580 | 100% | 2026-10-20 | 2026-10-22 | Tile Fixer [32 h]; Construction Cost [1454.24] | 1,454.24 | 1,454.24 |  | 05 | 02 | 02 | H1.C.A1.SA.FI.G.0640 | 1 |
| HAL-C-B-A-850 |  | Epoxy paint | 7d | 2026-09-24 A | 2026-10-15 A | HAL-C-B-A-960, HAL-P-ST-A-310 | 100% | 2026-09-30 | 2026-10-08 | Painter [112 h]; Construction Cost [102516] | 102,515.85 | 102,515.85 |  | 05 | 02 | 02 |  |  |

| ID | WBS | Activity | Duration | Start | Finish | Predecessors | Complete | Planned start | Planned finish | Total float | Free float | Resources | Cost | Actual cost | Phasing Code Category | Discipline | Project component code | Ordinal Start | Ordinal Finish | 00 Activity ID | Ordinal Duration | Zone # |
| --- | --- | --- | --- | --- | --- | --- | --- | --- | --- | --- | --- | --- | --- | --- | --- | --- | --- | --- | --- | --- | --- | --- |
|  | 3 | **DOORS & WINDOWS** |  | 2026-07-29 | 2026-09-26 |  |  |  |  |  |  |  |  |  |  |  |  |  |  |  |  |  |
| HAL-C-B-A-1010 |  | Window (CW1) | 7d | 2026-07-29 A | 2026-09-24 A | HAL-C-B-SS-180, HAL-P-ST-A-190 | 100% | 2026-08-20 | 2026-08-27 |  |  | Carperter [112 h]; Construction Cost [90682.8] | 90,682.84 | 90,682.84 | 05 | 02 | 02 |  |  |  |  |  |
| HAL-C-B-A-960 |  | Skylight fixtures installation | 7d | 2026-08-08 A | 2026-08-15 A | HAL-C-B-A-950, HAL-E-SA-A-850 | 100% | 2026-09-09 | 2026-09-16 |  |  | Carperter [112 h]; Construction Cost [61929.7] | 61,929.74 | 61,929.74 | 05 | 02 | 02 |  |  |  |  |  |
| HAL-C-B-A-640 |  | Roll up Shutter Door | 1d | 2026-08-13 A | 2026-08-15 A | HAL-C-B-A-1010, HAL-E-SA-A-920, HAL-E-SA-A-930, HAL-E-SA-A-940, HAL-P-ST-A-180 | 100% | 2026-08-30 | 2026-08-31 |  |  | Carperter [16 h]; Construction Cost [66353.3] | 66,353.3 | 66,353.3 | 05 | 02 | 02 |  |  |  |  |  |
| HAL-C-B-A-650 |  | Supply and install (D5) 1000*2200mm single leaf steel door with door | 1d | 2026-08-26 A | 2026-09-10 A | HAL-C-B-A-640 | 100% | 2026-09-07 | 2026-09-08 |  |  | Carperter [16 h]; Construction Cost [15482.4] | 15,482.44 | 15,482.44 | 05 | 02 | 02 |  |  |  |  |  |
| HAL-C-B-A-950 |  | Supply and install fire rated 45 min (D2) 1200*2200 mm single leaf steel door | 1d | 2026-08-26 A | 2026-09-10 A | HAL-C-B-A-940 | 100% | 2026-09-12 | 2026-09-13 |  |  | Carperter [16 h]; Construction Cost [16146] | 16,145.97 | 16,145.97 | 05 | 02 | 02 |  |  |  |  |  |
| HAL-C-B-A-710 |  | Supply and install (D4) 800*2200 mm single leaf aluminum door with door | 1d | 2026-09-14 A | 2026-09-26 A | HAL-C-B-A-650 | 100% | 2026-09-15 | 2026-09-16 |  |  | Carperter [16 h]; Construction Cost [21896.6] | 21,896.59 | 21,896.59 | 05 | 02 | 02 |  |  |  |  |  |
| HAL-C-B-A-720 |  | Supply and install (D7) 1000*2200 mm single leaf aluminum door with door | 1d | 2026-09-14 A | 2026-09-26 A | HAL-C-B-A-710 | 100% | 2026-09-16 | 2026-09-17 |  |  | Carperter [16 h]; Construction Cost [7520.04] | 7,520.04 | 7,520.04 | 05 | 02 | 02 |  |  |  |  |  |
| HAL-C-B-A-940 |  | Supply and install (D3) 1000*2200 mm single leaf aluminum door with door | 1d | 2026-09-14 A | 2026-09-26 A | HAL-C-B-A-720, HAL-P-ST-EN-130 | 100% | 2026-09-17 | 2026-09-19 |  |  | Carperter [16 h]; Construction Cost [15482.4] | 15,482.44 | 15,482.44 | 05 | 02 | 02 |  |  |  |  |  |
|  | 4 | **WATER PROOFING WORKS** |  | 2026-08-11 | 2026-08-13 |  |  |  |  |  |  |  |  |  |  |  |  |  |  |  |  |  |
| HAL-C-B-A-810 |  | Waterproofing membrane for toilets | 4d | 2026-08-11 A | 2026-08-13 A | HAL-C-B-M-510, HAL-C-B-A-630, HAL-C-B-A-960 | 100% | 2026-09-07 | 2026-09-12 |  |  | General Labour [64 h]; Construction Cost [4653.33] | 4,653.33 | 4,653.33 | 05 | 02 | 02 |  |  |  |  |  |
|  | 7 | **METAL WORKS** |  | 2026-08-17 | 2026-10-25 |  |  |  |  |  |  |  |  |  |  |  |  |  |  |  |  |  |
| HAL-C-B-A-740 |  | Steel Ladder | 2d | 2026-08-17 A | 2026-08-29 A | HAL-C-B-A-830, HAL-P-ST-A-210 | 100% | 2026-10-22 | 2026-10-24 |  |  | Steel Fixer [32 h]; General Labour [32 h]; Construction Cost [9510.64] | 9,510.64 | 9,510.64 | 05 | 02 | 02 |  |  |  |  |  |
| HAL-C-B-A-760 |  | Aluminium composite panel | 5d | 2026-09-05 A | 2026-10-03 A | HAL-C-B-A-840 SS, HAL-P-ST-A-1720 | 100% | 2026-10-27 | 2026-11-01 |  |  | Steel Fixer [80 h]; General Labour [80 h]; Construction Cost [175670] | 175,670.36 | 175,670.36 | 05 | 02 | 02 |  |  |  |  |  |
| HAL-C-B-A-750 |  | Galvanised Steel Gratings | 2d | 2026-10-06 A | 2026-10-07 A | HAL-C-B-A-760, HAL-P-ST-A-220 | 100% | 2026-10-26 | 2026-10-27 |  |  | Steel Fixer [32 h]; General Labour [32 h]; Construction Cost [6237.21] | 6,237.21 | 6,237.21 | 05 | 02 | 02 |  |  |  |  |  |
| HAL-C-B-A-840 |  | Steel railing works | 4d | 2026-10-24 A | 2026-10-25 A | HAL-C-B-A-740, HAL-P-ST-A-230, HAL-P-ST-EX-150, HAL-P-DL-EX-140, HAL-P-ST-EX-140, HAL-P-ST-EX-130, HAL-P-DL-EX-110, HAL-P-DL-EX-100, HAL-P-DL-EX-90 | 100% | 2026-10-26 | 2026-10-29 |  |  | Steel Fixer [64 h]; General Labour [64 h]; Construction Cost [7497.92] | 7,497.92 | 7,497.92 | 05 | 02 | 02 |  |  |  |  |  |
|  | 8 | **SPECIALTIES** |  | 2026-09-22 | 2026-10-28 |  |  |  |  |  |  |  |  |  |  |  |  |  |  |  |  |  |
| HAL-C-B-A-770 |  | Installation of fittings | 5d | 2026-09-22 A | 2026-09-24 A | HAL-C-B-A-750 SS, HAL-P-ST-M-570 | 100% | 2026-11-04 | 2026-11-10 |  |  | Plumber [80 h]; Construction Cost [21686.5] | 21,686.47 | 21,686.47 | 05 | 02 | 02 |  |  |  |  |  |
| HAL-C-B-A-790 |  | Furniture Installation | 1d | 2026-10-21 A | 2026-10-21 A | HAL-C-B-A-1000 SS | 100% | 2026-10-26 | 2026-10-26 |  |  | General Labour [16 h]; Mason [16 h]; Construction Cost [10561.2] | 10,561.24 | 10,561.24 | 05 | 02 | 02 |  |  |  |  |  |
| HAL-C-B-A-1000 |  | Identification sign; ID01 & ID02 | 3d | 2026-10-26 | 2026-10-28 | HAL-C-B-A-770, HAL-E-SA-A-950, HAL-E-SA-A-960, HAL-P-ST-A-1760 |  |  |  | 6d | 0d | Mason [48 h]; Construction Cost [9289.46] | 9,289.46 |  | 05 | 02 | 02 |  |  |  |  |  |
|  | 3 | **MECHANICAL** |  | 2026-04-25 | 2026-09-24 |  |  |  |  |  |  |  |  |  |  |  |  |  |  |  |  |  |
|  | 1 | **HVAC** |  | 2026-07-11 | 2026-09-24 |  |  |  |  |  |  |  |  |  |  |  |  |  |  |  |  |  |
|  | 1 | **FIRST STAGE** |  | 2026-07-11 | 2026-08-02 |  |  |  |  |  |  |  |  |  |  |  |  |  |  |  |  |  |
| HAL-C-B-M-450 |  | Installation of HVAC Ducts | 2d | 2026-07-11 A | 2026-08-02 A | HAL-C-B-M-470, HAL-E-SA-M-730, HAL-E-SA-M-740, HAL-P-ST-M-600, HAL-P-ST-M-610 | 100% | 2026-11-09 | 2026-11-11 |  |  | Ductman [32 h]; Construction Cost [141482] | 141,481.82 | 141,481.82 | 05 | 03 | 02 | 0 | 0 | H1.C.A1.0A.MH.G.1040 | 0 | 1 |
| HAL-C-B-M-480 |  | Installation of Duct insulation | 2d | 2026-07-11 A | 2026-08-02 A | HAL-C-B-M-450 | 100% | 2026-11-11 | 2026-11-14 |  |  | Ductman [32 h]; Construction Cost [18747.3] | 18,747.27 | 18,747.27 | 05 | 03 | 02 |  |  |  |  |  |

| ID | WBS | Activity | Duration | Start | Finish | Predecessors | Complete | Planned start | Planned finish | Resources | Cost | Actual cost | Ordinal Start | Ordinal Finish | 00 Activity ID | Ordinal Duration | Zone # | Phasing Code Category | Discipline | Project component code |
| --- | --- | --- | --- | --- | --- | --- | --- | --- | --- | --- | --- | --- | --- | --- | --- | --- | --- | --- | --- | --- |
|  | 2 | **SECOND STAGE** |  | 2026-08-02 | 2026-09-24 |  |  |  |  |  |  |  |  |  |  |  |  |  |  |  |
| HAL-C-B-M-440 |  | Installation of Exhaust Fans | 2d | 2026-08-02 A | 2026-08-02 A | HAL-C-B-A-680, HAL-P-ST-M-590 | 100% | 2026-10-19 | 2026-10-20 | AC Technician [32 h]; Construction Cost [9331.24] | 9,331.24 | 9,331.24 | 0 | 0 | H1.C.A1.0A.MH.X.4050 | 0 | 1 | 05 | 03 | 02 |
| HAL-C-B-M-470 |  | Installation of Wall Propeller Type Exhaust Fan | 4d | 2026-09-02 A | 2026-09-12 A | HAL-C-B-M-440, HAL-E-SA-M-750, HAL-E-SA-M-760, HAL-P-ST-M-370 | 100% | 2026-10-22 | 2026-10-27 | AC Technician [64 h]; Construction Cost [17417.7] | 17,417.74 | 17,417.74 |  |  |  |  |  | 05 | 03 | 02 |
| HAL-C-B-M-650 |  | Supply, install, test and commission door grilles & exhaust louvers | 2d | 2026-09-02 A | 2026-09-12 A | HAL-C-B-M-460 | 100% | 2026-10-29 | 2026-11-01 | Ductman [32 h]; Construction Cost [7188.28] | 7,188.28 | 7,188.28 | 0 | 0 | H1.C.A1.0A.MH.G.3010 | 0 | 1 | 05 | 03 | 02 |
| HAL-C-B-M-460 |  | Installation of Diffuser | 2d | 2026-09-16 A | 2026-09-24 A | HAL-C-B-M-480, HAL-P-ST-M-620 | 100% | 2026-10-28 | 2026-10-31 | Ductman [32 h]; Construction Cost [2764.72] | 2,764.72 | 2,764.72 | 0 | 0 | H1.C.A1.0A.MH.G.3010 | 0 | 1 | 05 | 03 | 02 |
|  | 2 | **FIRE FIGHTING SYSTEM** |  | 2026-06-24 | 2026-09-12 |  |  |  |  |  |  |  |  |  |  |  |  |  |  |  |
|  | 1 | **FIRST STAGE** |  | 2026-06-24 | 2026-08-08 |  |  |  |  |  |  |  |  |  |  |  |  |  |  |  |
| HAL-C-B-M-610 |  | Installation of Fire Fighting Pipes (Seamless Black Steel) | 7d | 2026-06-24 A | 2026-08-08 A | HAL-C-B-A-680, HAL-E-SA-M-770, HAL-E-SA-M-790, HAL-E-SA-M-800, HAL-E-SA-M-780, HAL-P-ST-M-340 | 100% | 2026-10-24 | 2026-10-31 | Pipe Fitter [112 h]; Construction Cost [60425.7] | 60,425.74 | 60,425.74 | 0 | 0 | H1.C.A1.0A.MF.G.1010 | 0 | 1 | 05 | 03 | 02 |
| HAL-C-B-M-620 |  | Installation of Fire Fighting Valve | 5d | 2026-06-24 A | 2026-08-08 A | HAL-C-B-M-610, HAL-P-ST-M-390, HAL-P-ST-M-460, HAL-P-ST-M-450, HAL-P-ST-M-440 | 100% | 2026-11-01 | 2026-11-05 | Pipe Fitter [80 h]; Construction Cost [12712.2] | 12,712.18 | 12,712.18 | 0 | 0 | H1.C.A1.0A.MF.G.2010 | 0 | 1 | 05 | 03 | 02 |
|  | 2 | **SECOND STAGE** |  | 2026-07-11 | 2026-09-12 |  |  |  |  |  |  |  |  |  |  |  |  |  |  |  |
| HAL-C-B-M-630 |  | Installation of Fire Hose Cabinet | 3d | 2026-07-11 A | 2026-09-12 A | HAL-C-B-M-620, HAL-P-ST-M-350 | 100% | 2026-11-10 | 2026-11-14 | Pipe Fitter [48 h]; Construction Cost [11147.4] | 11,147.36 | 11,147.36 | 0 | 0 | H1.C.A1.0A.MF.G.3010 | 0 | 1 | 05 | 03 | 02 |
| HAL-C-B-M-680 |  | Supply, install, test and commission Fire Department Connection(FDC) | 3d | 2026-07-11 A | 2026-08-08 A | HAL-C-B-M-650 | 100% | 2026-11-18 | 2026-11-22 | Pipe Fitter [48 h]; Construction Cost [2598.84] | 2,598.84 | 2,598.84 | 0 | 0 | H1.C.A1.0A.MF.G.3010 | 0 | 1 | 05 | 03 | 02 |
|  | 3 | **SEWER AND DRAINAGE SYSTEM** |  | 2026-04-25 | 2026-09-22 |  |  |  |  |  |  |  |  |  |  |  |  |  |  |  |
|  | 1 | **FIRST STAGE** |  | 2026-04-25 | 2026-08-08 |  |  |  |  |  |  |  |  |  |  |  |  |  |  |  |
| HAL-C-B-M-510 |  | Installation of Sanitary Waste / Drainage Pipes | 4d | 2026-04-25 A | 2026-05-16 A | HAL-C-B-S-717, HAL-E-SA-M-600, HAL-E-SA-M-610, HAL-E-SA-M-650, HAL-E-MT-M-2030 | 100% | 2026-06-22 | 2026-06-27 | Plumber [64 h]; Construction Cost [14362.4] | 14,362.41 | 14,362.41 | 0 | 0 | H1.C.K1.00.MP.G.1020 | 0 | 1 | 05 | 03 | 02 |
| HAL-C-B-M-530 |  | Installation of Floor Drain | 2d | 2026-06-17 A | 2026-08-08 A | HAL-C-B-M-510, HAL-C-B-A-670, HAL-E-SA-M-620, HAL-P-ST-M-530 | 100% | 2026-11-09 | 2026-11-10 | Plumber [32 h]; Construction Cost [10616.5] | 10,616.53 | 10,616.53 |  |  |  |  | 1 | 05 | 03 | 02 |
| HAL-C-B-M-690 |  | Installation of Trench drain | 5d | 2026-06-17 A | 2026-08-08 A | HAL-C-B-M-530 | 100% | 2026-11-11 | 2026-11-16 | Plumber [80 h]; Construction Cost [11379.6] | 11,379.59 | 11,379.59 |  |  |  |  |  | 05 | 03 | 02 |
|  | 2 | **SECOND STAGE** |  | 2026-08-05 | 2026-09-22 |  |  |  |  |  |  |  |  |  |  |  |  |  |  |  |
| HAL-C-B-M-550 |  | Installation of Roof Vent Cap | 2d | 2026-08-05 A | 2026-09-05 A | HAL-C-B-M-540, HAL-P-ST-M-520 | 100% | 2026-10-15 | 2026-10-18 | Pipe Fitter [32 h]; Construction Cost [829.41] | 829.41 | 829.41 |  |  |  |  |  | 05 | 03 | 02 |
| HAL-C-B-M-490 |  | Installation of Electric Water Heater | 2d | 2026-08-06 A | 2026-08-06 A | HAL-C-B-M-690, HAL-P-ST-M-550 | 100% | 2026-10-01 | 2026-10-04 | Plumber [32 h]; Construction Cost [1592.48] | 1,592.48 | 1,592.48 | 0 | 0 | H1.C.K1.00.MP.G.1030 | 0 | 1 | 05 | 03 | 02 |
| HAL-C-B-M-540 |  | Installation of Water Tap | 2d | 2026-08-25 A | 2026-09-16 A | HAL-C-B-M-520, HAL-C-B-M-580, HAL-P-ST-M-3410 | 100% | 2026-10-11 | 2026-10-12 | Plumber [32 h]; Construction Cost [2654.13] | 2,654.13 | 2,654.13 |  |  |  |  |  | 05 | 03 | 02 |
| HAL-C-B-M-500 |  | Installation of Sanitary Fixture and Accessories | 4d | 2026-09-16 A | 2026-09-22 A | HAL-C-B-M-490, HAL-P-ST-M-360, HAL-C-B-A-850 | 100% | 2026-10-20 | 2026-10-24 | Plumber [64 h]; Construction Cost [16243] | 16,243.04 | 16,243.04 | 0 | 0 | H1.C.K1.00.MP.G.2040 | 0 | 1 | 05 | 03 | 02 |
| HAL-C-B-M-520 |  | Installation of Lavotary /Wash Basin | 2d | 2026-09-16 A | 2026-09-22 A | HAL-C-B-M-490, HAL-C-B-M-500, HAL-P-ST-M-580 | 100% | 2026-10-25 | 2026-10-26 | Plumber [32 h]; Construction Cost [20348.3] | 20,348.35 | 20,348.35 |  |  |  |  | 1 | 05 | 03 | 02 |
| HAL-C-B-M-580 |  | Installation of Bib Tap | 2d | 2026-09-16 A | 2026-09-22 A | HAL-C-B-M-500, HAL-C-B-M-520, HAL-P-ST-M-560 | 100% | 2026-10-27 | 2026-10-28 | Plumber [32 h]; Construction Cost [2211.78] | 2,211.78 | 2,211.78 |  |  |  |  |  | 05 | 03 | 02 |

| ID | WBS | Activity | Duration | Start | Finish | Predecessors | Complete | Remaining | Planned start | Planned finish | Total float | Free float | Resources | Cost | Actual cost | Ordinal Start | Ordinal Finish | 00 Activity ID | Ordinal Duration | Zone # | Phasing Code Category | Discipline | Project component code | Remarks |
| --- | --- | --- | --- | --- | --- | --- | --- | --- | --- | --- | --- | --- | --- | --- | --- | --- | --- | --- | --- | --- | --- | --- | --- | --- |
|  | 4 | **WATER SUPPLY SYSTEM** |  | 2026-07-14 | 2026-08-06 |  |  |  |  |  |  |  |  |  |  |  |  |  |  |  |  |  |  |  |
|  | 1 | **FIRST STAGE** |  | 2026-07-14 | 2026-08-06 |  |  |  |  |  |  |  |  |  |  |  |  |  |  |  |  |  |  |  |
| HAL-C-B-M-600 |  | Installation of Water Supply Pipes | 4d | 2026-07-14 A | 2026-08-06 A | HAL-C-B-A-680, HAL-E-SA-M-630, HAL-E-SA-M-640, HAL-E-SA-M-660, HAL-P-ST-M-480 | 100% |  | 2026-10-08 | 2026-10-12 |  |  | Plumber [64 h]; Construction Cost [19520.2] | 19,520.16 | 19,520.16 | 0 | 0 | H1.C.K1.00.MP.G.1010 | 0 | 1 | 05 | 03 | 02 |  |
| HAL-C-B-M-590 |  | Installation of Water Supply Valve | 2d | 2026-08-01 A | 2026-08-06 A | HAL-C-B-M-600, HAL-E-SA-M-670, HAL-E-SA-M-680, HAL-E-SA-M-690, HAL-P-ST-M-490, HAL-P-ST-M-420 | 100% |  | 2026-10-20 | 2026-10-21 |  |  | Plumber [32 h]; Construction Cost [15736.8] | 15,736.79 | 15,736.79 | 0 | 0 | H1.C.K1.00.MP.G.2010 | 0 | 1 | 05 | 03 | 02 |  |
|  | 2 | **SECOND STAGE** |  | 2026-08-01 | 2026-08-06 |  |  |  |  |  |  |  |  |  |  |  |  |  |  |  |  |  |  |  |
| HAL-C-B-M-640 |  | Capped connection | 5d | 2026-08-01 A | 2026-08-06 A | HAL-C-B-M-590, HAL-P-ST-M-500 | 100% |  | 2026-10-22 | 2026-10-27 |  |  | Plumber [80 h]; Construction Cost [287.53] | 287.53 | 287.53 |  |  |  |  |  | 05 | 03 | 02 |  |
|  | 4 | **ELECTRICAL** |  | 2026-04-25 | 2026-10-27 |  |  |  |  |  |  |  |  |  |  |  |  |  |  |  |  |  |  |  |
|  | 1 | **FIRST STAGE** |  | 2026-04-25 | 2026-10-25 |  |  |  |  |  |  |  |  |  |  |  |  |  |  |  |  |  |  |  |
| HAL-C-B-E-343 |  | Installation of Earthing and Grounding | 4d | 2026-04-25 A | 2026-10-25 A | HAL-C-B-E-453 SS, HAL-E-SA-E-1050, HAL-E-SA-E-1060, HAL-E-SA-E-1070, HAL-P-ST-E-340 | 100% |  | 2026-12-05 | 2026-12-09 |  |  | Electrician [64 h]; Construction Cost [17002.4] | 17,002.41 | 17,002.41 |  |  | H1.C.K1.00.EM.G.2040 |  | 1 | 05 | 04 | 02 | 1 |
| HAL-C-B-E-413 |  | Installation of Sleeves & Power outlet | 8d | 2026-04-25 A | 2026-09-10 A | HAL-C-B-A-620, HAL-E-SA-E-940, HAL-E-SA-E-950, HAL-E-SA-E-960, HAL-E-SA-E-970, HAL-E-MT-E-2040, HAL-P-ST-E-310 | 100% |  | 2026-09-19 | 2026-09-29 |  |  | Electrician [128 h]; Construction Cost [2853.19] | 2,853.19 | 2,853.19 |  |  |  |  | 1 | 05 | 04 | 02 | 1 |
| HAL-C-B-E-373 |  | Installation of Conduits and wiring outlets - Fire Alarm System | 4d | 2026-06-13 A | 2026-06-20 A | HAL-C-B-E-433 | 100% |  | 2026-11-02 | 2026-11-07 |  |  | Electrician [64 h]; Construction Cost [2026.84] | 2,026.84 | 2,026.84 |  |  | H1.C.K1.00.EL.G.1020 |  | 1 | 05 | 04 | 02 | 1 |
| HAL-C-B-E-393 |  | Installation of Conduites for Lighting Fixture | 4d | 2026-06-13 A | 2026-06-20 A | HAL-C-B-E-363, HAL-E-SA-E-990, HAL-E-SA-E-1000 | 100% |  | 2026-11-16 | 2026-11-21 |  |  | Electrician [64 h]; Construction Cost [3983.66] | 3,983.66 | 3,983.66 |  |  | H1.C.K1.00.EM.G.2030 |  | 1 | 05 | 04 | 02 | 1 |
| HAL-C-B-E-463 |  | Installation of Wires | 4d | 2026-06-24 A | 2026-09-22 A | HAL-C-B-E-393, HAL-P-ST-E-320 | 100% |  | 2026-09-06 | 2026-09-10 |  |  | Electrician [64 h]; Construction Cost [7966.69] | 7,966.69 | 7,966.69 |  |  |  |  |  | 05 | 04 | 02 |  |
| HAL-C-B-E-453 |  | Installation of LV Cables | 4d | 2026-09-05 A | 2026-10-15 A | HAL-C-B-E-443, HAL-P-ST-E-290, HAL-C-B-M-680 | 100% |  | 2026-11-01 | 2026-11-05 |  |  | Electrician [64 h]; Construction Cost [31551] | 31,550.99 | 31,550.99 |  |  |  |  |  | 05 | 04 | 02 |  |
|  | 2 | **SECOND STAGE** |  | 2026-06-17 | 2026-10-27 |  |  |  |  |  |  |  |  |  |  |  |  |  |  |  |  |  |  |  |
| HAL-C-B-E-503 |  | Installation of Access Control System | 4d | 2026-06-17 A | 2026-10-26 | HAL-E-SA-E-1010, HAL-E-SA-E-1100, HAL-E-ST-E-0240 | 80% | 0.8d | 2026-09-02 | 2026-09-06 | 5.6d | 0d | Electrician [64 h]; Construction Cost [24315.4] | 24,315.41 | 19,452.33 |  |  | H1.C.K1.00.EM.G.2040 |  | 1 | 05 | 04 | 02 |  |
| HAL-C-B-E-720 |  | Installation of CCTV System | 7d | 2026-06-17 A | 2026-10-12 A | HAL-C-B-E-483 SS, HAL-E-SA-E-1030, HAL-E-ST-E-0230 | 100% |  | 2026-11-03 | 2026-11-11 |  |  | Plumber [112 h]; Construction Cost [66177.6] | 66,177.58 | 66,177.58 |  |  |  |  |  | 05 | 04 | 02 |  |
| HAL-C-B-E-473 |  | Installation of LP-1 Panel | 2d | 2026-08-04 A | 2026-09-10 A | HAL-C-B-E-423, HAL-E-ST-E-190 | 100% |  | 2026-10-10 | 2026-10-12 |  |  | Electrician [32 h]; Construction Cost [15128.5] | 15,128.55 | 15,128.55 |  |  | H1.C.K1.00.EM.G.2020 |  | 1 | 05 | 04 | 02 |  |
| HAL-C-B-E-443 |  | Installation of Telephone Cabinet | 2d | 2026-08-13 A | 2026-10-01 A | HAL-C-B-E-483, HAL-E-SA-E-1040, HAL-E-SA-E-1090, HAL-P-ST-E-330 | 100% |  | 2026-10-20 | 2026-10-22 |  |  | Electrician [32 h]; Construction Cost [23299.8] | 23,299.84 | 23,299.84 |  |  |  |  | 1 | 05 | 04 | 02 |  |
| HAL-C-B-E-730 |  | Installation of Solar power plant | 7d | 2026-08-22 A | 2026-10-01 A | HAL-E-SA-E-980, HAL-E-ST-E-0250 | 100% |  | 2026-08-24 | 2026-08-31 |  |  | Plumber [112 h]; Construction Cost [218966] | 218,965.89 | 218,965.89 |  |  |  |  |  | 05 | 04 | 02 |  |
| HAL-C-B-E-403 |  | Installation of Wiring Devices | 4d | 2026-09-05 A | 2026-10-15 A | HAL-C-B-E-413, HAL-P-ST-E-350 | 100% |  | 2026-09-07 | 2026-09-12 |  |  | Electrician [64 h]; Construction Cost [20742.2] | 20,742.16 | 20,742.16 |  |  | H1.C.K1.00.EM.G.3020 |  | 1 | 05 | 04 | 02 |  |
| HAL-C-B-E-433 |  | Installation of Disconnect Switches | 2d | 2026-09-05 A | 2026-10-15 A | HAL-C-B-E-403, HAL-P-ST-E-300 | 100% |  | 2026-09-12 | 2026-09-14 |  |  | Electrician [32 h]; Construction Cost [25808.4] | 25,808.36 | 25,808.36 |  |  |  |  |  | 05 | 04 | 02 |  |
| HAL-C-B-E-483 |  | Installation of PP-AC panel | 2d | 2026-09-05 A | 2026-10-15 A | HAL-C-B-E-473, HAL-E-ST-E-200 | 100% |  | 2026-10-03 | 2026-10-05 |  |  | Electrician [32 h]; Construction Cost [18214] | 18,213.99 | 18,213.99 |  |  | H1.C.K1.00.EM.G.2020 |  | 1 | 05 | 04 | 02 |  |
| HAL-C-B-E-423 |  | Installation of Main Distribution Board | 2d | 2026-09-16 A | 2026-10-15 A | HAL-C-B-E-383, HAL-P-ST-E-190 | 100% |  | 2026-10-12 | 2026-10-14 |  |  | Electrician [32 h]; Construction Cost [25479.7] | 25,479.66 | 25,479.66 |  |  | H1.C.K1.00.EM.G.2020 |  | 1 | 05 | 04 | 02 |  |
| HAL-C-B-E-353 |  | Installation of Fire Alarm Control Panel | 4d | 2026-09-24 A | 2026-10-15 A | HAL-C-B-E-373, HAL-E-SA-E-1020, HAL-P-ST-E-250, HAL-C-B-E-730 | 100% |  | 2026-09-29 | 2026-10-04 |  |  | Electrician [64 h]; Construction Cost [16216.6] | 16,216.62 | 16,216.62 |  |  | H1.C.K1.00.EL.X.4120 |  | 1 | 05 | 04 | 02 |  |
| HAL-C-B-E-363 |  | Installation of Fire Detectors & Accessories | 4d | 2026-09-24 A | 2026-10-12 A | HAL-C-B-E-353, HAL-E-SA-E-1080 | 100% |  | 2026-10-05 | 2026-10-10 |  |  | Electrician [64 h]; Construction Cost [31219.2] | 31,219.23 | 31,219.23 |  |  | H1.C.K1.00.EL.G.3020 |  | 1 | 05 | 04 | 02 |  |
| HAL-C-B-E-383 |  | Installation of Lighting fixtures | 4d | 2026-09-24 A | 2026-10-15 A | HAL-C-B-E-463, HAL-P-ST-E-200, HAL-P-ST-E-210, HAL-P-ST-E-220, HAL-P-ST-E-230, HAL-P-ST-E-240 | 100% |  | 2026-10-11 | 2026-10-15 |  |  | Electrician [64 h]; Construction Cost [59751.1] | 59,751.14 | 59,751.14 |  |  | H1.C.K1.00.EM.G.3010 |  | 1 | 05 | 04 | 02 |  |
| HAL-C-B-E-513 |  | Monitor Modules for Fire Alarm | 2d | 2026-09-24 A | 2026-10-27 | HAL-C-B-E-503, HAL-E-SA-E-1110, HAL-E-SA-E-1120 | 70% | 0.6d | 2026-09-30 | 2026-10-01 | 5.6d | 0d | Electrician [32 h]; Construction Cost [3760.02] | 3,760.02 | 2,632.01 |  |  | H1.C.K1.00.EM.G.2040 |  | 1 | 05 | 04 | 02 |  |
| HAL-C-B-E-523 |  | Line Isolator Modules for Fire Alarm | 2d | 2026-09-24 A | 2026-10-15 A | HAL-C-B-E-513 | 100% |  | 2026-10-03 | 2026-10-04 |  |  | Electrician [32 h]; Construction Cost [163.42] | 163.42 | 163.42 |  |  | H1.C.K1.00.EM.G.2040 |  | 1 | 05 | 04 | 02 |  |
| HAL-C-B-E-533 |  | Firewarning flash light with sounder; wall mounted, Weather proof | 2d | 2026-09-24 A | 2026-10-01 A | HAL-C-B-E-523 | 100% |  | 2026-10-05 | 2026-10-06 |  |  | Electrician [32 h]; Construction Cost [2963.79] | 2,963.79 | 2,963.79 |  |  | H1.C.K1.00.EM.G.2040 |  | 1 | 05 | 04 | 02 |  |

| ID | WBS | Activity | Duration | Start | Finish | Predecessors | Complete | Planned start | Planned finish | Resources | Cost | Actual cost | 00 Activity ID | AMH Tender Act. ID | Tender Original Duration | Zone # | Phasing Code Category | Discipline | Project component code |
| --- | --- | --- | --- | --- | --- | --- | --- | --- | --- | --- | --- | --- | --- | --- | --- | --- | --- | --- | --- |
|  | 8 | **BLOCK C** |  | 2026-01-04 | 2026-10-28 |  |  |  |  |  |  |  |  |  |  |  |  |  |  |
|  | 1 | **STRUCTURAL** |  | 2026-01-04 | 2026-06-20 |  |  |  |  |  |  |  |  |  |  |  |  |  |  |
|  | 1 | **FOOTING** |  | 2026-01-04 | 2026-02-03 |  |  |  |  |  |  |  |  |  |  |  |  |  |  |
| HAL-C-C-S-250 |  | Excavation for footings | 7d | 2026-01-04 A | 2026-01-12 A | HAL-C-B-S-160, HAL-PMS-MMS-0030, HAL-PMS-MMS-0020, HAL-PMS-MMS-0050, HAL-PMS-MMS-0040 | 100% | 2026-01-27 | 2026-02-04 | General Labour [112 h]; Equipment Operator [112 h]; Truck [56 h]; Excavator [56 h]; Mini Roller Compactor [56 h]; Construction Cost [66496.4] | 66,496.45 | 66,496.45 | H1.C.K1.00.SW.F.1010 | PH1-MHR-ST-640 | 12 | 1 | 05 | 01 | 03 |
| HAL-C-C-S-1057 |  | Lean Concrete Below Footings | 2d | 2026-01-18 A | 2026-01-18 A | HAL-C-C-S-1207 | 100% | 2026-02-14 | 2026-02-15 | Mason [32 h]; Construction Cost [8238.87] | 8,238.87 | 8,238.87 | H1.C.K1.00.SW.F.1030 | PH1-MHR-ST-1020 | 10 | 1 | 05 | 01 | 03 |
| HAL-C-C-S-1207 |  | Vapour Barrier for Footings | 1d | 2026-01-18 A | 2026-01-18 A | HAL-C-C-S-1297 | 100% | 2026-02-12 | 2026-02-12 | General Labour [16 h]; Construction Cost [6030.16] | 6,030.16 | 6,030.16 | H1.C.K1.00.SW.F.1040 | PH1-MHR-ST-1080 | 15 | 1 | 05 | 01 | 03 |
| HAL-C-C-S-1297 |  | Anti Termite Below Footings | 1d | 2026-01-18 A | 2026-01-18 A | HAL-C-C-S-250 | 100% | 2026-02-11 | 2026-02-11 | Mason [16 h]; Construction Cost [8441.61] | 8,441.61 | 8,441.61 | H1.C.K1.00.SW.F.1030 | PH1-MHR-ST-1020 | 10 | 1 | 05 | 01 | 03 |
| HAL-C-C-S-1117 |  | Formwork for Footings | 3.12d | 2026-01-21 A | 2026-01-27 A | HAL-C-C-S-1107 | 100% | 2026-02-21 | 2026-02-25 | Carperter [64 h]; Construction Cost [23267.9] | 23,267.89 | 23,267.89 |  |  |  | 1 | 05 | 01 | 03 |
| HAL-C-C-S-1107 |  | Rebar for Footings | 4d | 2026-01-25 A | 2026-02-02 A | HAL-C-C-S-1057 | 100% | 2026-02-09 | 2026-02-12 | Steel Fixer [64 h]; Construction Cost [93071.6] | 93,071.56 | 93,071.56 |  |  |  | 1 | 05 | 01 | 03 |
| HAL-C-C-S-1067 |  | Pouring Concrete for Footings | 1d | 2026-02-03 A | 2026-02-03 A | HAL-C-C-S-1117 | 100% | 2026-02-25 | 2026-02-26 | Carperter [16 h]; Mason [16 h]; Steel Fixer [16 h]; Concrete Mixer [8 h]; Equipment Operator [16 h]; Construction Cost [116339] | 116,339.45 | 116,339.45 | H1.C.K1.00.RC.F.1010 | PH1-MHR-ST-1030 | 21 | 1 | 05 | 01 | 03 |
|  | 2 | **COLUMN NECK** |  | 2026-01-29 | 2026-03-18 |  |  |  |  |  |  |  |  |  |  |  |  |  |  |
| HAL-C-C-S-1157 |  | Rebar for column neck | 2d | 2026-01-29 A | 2026-02-07 A | HAL-C-C-S-1067 | 100% | 2026-02-17 | 2026-02-19 | Steel Fixer [32 h]; Construction Cost [21993.7] | 21,993.66 | 21,993.66 |  |  |  | 1 | 05 | 01 | 03 |
| HAL-C-C-S-1167 |  | Formwork for column neck | 2d | 2026-02-10 A | 2026-02-11 A | HAL-C-C-S-1157 | 100% | 2026-02-26 | 2026-03-01 | Carperter [32 h]; Construction Cost [5498.72] | 5,498.72 | 5,498.72 |  |  |  | 1 | 05 | 01 | 03 |
| HAL-C-C-S-1147 |  | Pouring Concrete for column neck | 0.82d | 2026-02-12 A | 2026-03-02 A | HAL-C-C-S-1167 | 100% | 2026-03-04 | 2026-03-04 | Mason [16 h]; Carperter [16 h]; Concrete Mixer [8 h]; Steel Fixer [16 h]; Equipment Operator [16 h]; Construction Cost [27492.4] | 27,492.39 | 27,492.39 | H1.C.K1.00.RC.F.1110 | PH1-MHR-ST-1030 | 21 | 1 | 05 | 01 | 03 |
| HAL-C-C-S-1197 |  | Damp proof /Bitumin paint on Footings & column neck | 1.3d | 2026-02-15 A | 2026-03-03 A | HAL-C-C-S-1147 | 100% | 2026-03-04 | 2026-03-05 | Painter [32 h]; Construction Cost [6903.81] | 6,903.81 | 6,903.81 | H1.C.K1.00.SW.F.1050 | PH1-MHR-ST-1080 | 15 | 1 | 05 | 01 | 03 |
| HAL-C-C-S-1257 |  | Backfilling / Compaction up to Bottom of Grade Beams | 12d | 2026-02-17 A | 2026-03-18 A | HAL-C-C-S-1197 | 100% | 2026-03-10 | 2026-03-25 | General Labour [256 h]; Truck [128 h]; Mini Roller Compactor [128 h]; Equipment Operator [256 h]; Wheel Loader [128 h]; Construction Cost [32707.9] | 32,707.87 | 32,707.87 | H1.C.K1.00.SW.F.1060 | PH1-MHR-ST-645 | 15 | 1 | 05 | 01 | 03 |
|  | 3 | **GRADE BEAM** |  | 2026-03-07 | 2026-04-04 |  |  |  |  |  |  |  |  |  |  |  |  |  |  |
| HAL-C-C-S-1077 |  | Lean Concrete Below Grade Beams | 2d | 2026-03-07 A | 2026-03-24 A | HAL-C-C-S-1227 | 100% | 2026-03-28 | 2026-03-29 | Mason [32 h]; Construction Cost [8238.87] | 8,238.87 | 8,238.87 | H1.C.K1.00.SW.F.1130 | PH1-MHR-ST-1020 | 10 | 1 | 05 | 01 | 03 |
| HAL-C-C-S-1227 |  | Vapour barrier for Grade Beams | 2d | 2026-03-07 A | 2026-03-24 A | HAL-C-C-S-1307 | 100% | 2026-03-25 | 2026-03-26 | General Labour [32 h]; Construction Cost [4019.9] | 4,019.9 | 4,019.9 | H1.C.K1.00.SW.F.1040 | PH1-MHR-ST-1080 | 15 | 1 | 05 | 01 | 03 |
| HAL-C-C-S-1307 |  | Anti Termite Below Grade Beams | 1d | 2026-03-07 A | 2026-03-24 A | HAL-C-C-S-1257 | 100% | 2026-03-24 | 2026-03-24 | Mason [16 h]; Construction Cost [8441.61] | 8,441.61 | 8,441.61 | H1.C.K1.00.SW.F.1030 | PH1-MHR-ST-1020 | 10 | 1 | 05 | 01 | 03 |
| HAL-C-C-S-1127 |  | Rebar for Grade Beams | 5d | 2026-03-16 A | 2026-03-28 A | HAL-C-C-S-1077 | 100% | 2026-04-07 | 2026-04-13 | Steel Fixer [80 h]; Construction Cost [24993.1] | 24,993.07 | 24,993.07 |  |  |  | 1 | 05 | 01 | 03 |
| HAL-C-C-S-1137 |  | Formwork for Grade Beams | 2d | 2026-03-26 A | 2026-03-29 A | HAL-C-C-S-1127 | 100% | 2026-04-13 | 2026-04-15 | Carperter [32 h]; Construction Cost [6248.27] | 6,248.27 | 6,248.27 |  |  |  | 1 | 05 | 01 | 03 |
| HAL-C-C-S-1287 |  | Anchor bolts installation | 2d | 2026-03-28 A | 2026-03-29 A | HAL-C-C-S-1137 SS | 100% | 2026-04-07 | 2026-04-09 | Carperter [32 h]; Construction Cost [5667.68] | 5,667.68 | 5,667.68 |  |  |  | 1 | 05 | 01 | 03 |
| HAL-C-C-S-1087 |  | Pouring Concrete for Grade Beams | 1d | 2026-03-29 A | 2026-03-29 A | HAL-C-C-S-1137, HAL-C-C-S-1287 | 100% | 2026-04-09 | 2026-04-11 | Mason [16 h]; Carperter [16 h]; Concrete Mixer [8 h]; Steel Fixer [16 h]; Equipment Operator [16 h]; Construction Cost [31241.3] | 31,241.35 | 31,241.35 | H1.C.K1.00.RC.F.1110 | PH1-MHR-ST-1030 | 21 | 1 | 05 | 01 | 03 |
| HAL-C-C-S-1237 |  | Damp proof /Bitumin paint on Grade Beams | 2d | 2026-04-04 A | 2026-04-04 A | HAL-C-C-S-1087 | 100% | 2026-04-23 | 2026-04-25 | Painter [32 h]; Construction Cost [6903.81] | 6,903.81 | 6,903.81 | H1.C.K1.00.SW.F.1050 | PH1-MHR-ST-1080 | 15 | 1 | 05 | 01 | 03 |

| ID | WBS | Activity | Duration | Start | Finish | Predecessors | Complete | Planned start | Planned finish | Resources | Cost | Actual cost | Zone # | Phasing Code Category | Discipline | Project component code | 00 Activity ID | AMH Tender Act. ID | Tender Original Duration | project summary-6 | PS (su & rbf)-6 | New code for weekly report-6 | New discipline code-6 | Remarks |
| --- | --- | --- | --- | --- | --- | --- | --- | --- | --- | --- | --- | --- | --- | --- | --- | --- | --- | --- | --- | --- | --- | --- | --- | --- |
|  | 5 | **SLAB ON GRADE** |  | 2026-04-13 | 2026-06-20 |  |  |  |  |  |  |  |  |  |  |  |  |  |  |  |  |  |  |  |
| HAL-C-C-S-1267 |  | Backfilling / Compaction for Slab on Grade | 12d | 2026-04-13 A | 2026-04-19 A | HAL-C-C-S-1237 | 100% | 2026-04-30 | 2026-05-13 | Mini Roller Compactor [128 h]; General Labour [256 h]; Equipment Operator [256 h]; Wheel Loader [128 h]; Truck [128 h]; Construction Cost [32707.9] | 32,707.87 | 32,707.87 | 1 | 05 | 01 | 03 |  |  |  |  |  |  |  |  |
| HAL-C-C-S-1217 |  | Anti Termite Treatment below Ground Slab | 1d | 2026-05-09 A | 2026-05-12 A | HAL-C-C-S-1267 | 100% | 2026-05-25 | 2026-05-25 | General Labour [16 h]; Construction Cost [11255.5] | 11,255.49 | 11,255.49 | 1 | 05 | 01 | 03 | H1.C.A1.06.SW.F.1220 | PH1-MHR-ST-645 | 15 |  |  |  |  |  |
| HAL-C-C-S-1247 |  | Vapour barrier for below Ground Slab | 2d | 2026-05-09 A | 2026-05-12 A | HAL-C-C-S-1217 | 100% | 2026-05-30 | 2026-05-31 | General Labour [32 h]; Construction Cost [10050.1] | 10,050.07 | 10,050.07 | 1 | 05 | 01 | 03 |  |  |  |  |  |  |  |  |
| HAL-C-C-S-1097 |  | Pouring Concrete for Ground Slab | 4d | 2026-05-10 A | 2026-05-13 A | HAL-C-C-S-1247 | 100% | 2026-06-01 | 2026-06-04 | Mason [64 h]; Carperter [64 h]; Steel Fixer [64 h]; Concrete Mixer [32 h]; Equipment Operator [64 h]; Construction Cost [304092] | 304,091.64 | 304,091.64 | 1 | 05 | 01 | 03 | H1.C.A1.06.RC.G.1210 | PH1-MHR-ST-496 | 24 |  |  |  |  |  |
| HAL-C-C-S-1277 |  | Concrete pad | 7d | 2026-06-17 A | 2026-06-20 A | HAL-C-C-A-320 | 100% | 2026-08-15 | 2026-08-23 | Mason [112 h]; Construction Cost [1803.82] | 1,803.82 | 1,803.82 |  | 05 | 01 | 03 |  |  |  |  |  |  |  |  |
|  | 4 | **COLUMNS & BEAMS** |  | 2026-02-28 | 2026-06-20 |  |  |  |  |  |  |  |  |  |  |  |  |  |  |  |  |  |  |  |
| HAL-C-C-S-6101 |  | Rebar for Tie Beams | 4d | 2026-02-28 A | 2026-03-02 A | HAL-C-C-S-5103 | 100% | 2026-06-06 | 2026-06-10 | Steel Fixer [64 h]; Construction Cost [7796.52] | 7,796.52 | 7,796.52 | 1 | 05 | 01 | 03 |  |  |  | 3 | 1 | 4 | 1 |  |
| HAL-C-C-S-6102 |  | Formwork for Tie Beams | 2d | 2026-03-02 A | 2026-03-04 A | HAL-C-C-S-6101 | 100% | 2026-06-10 | 2026-06-13 | Carperter [32 h]; Construction Cost [1949.44] | 1,949.44 | 1,949.44 | 1 | 05 | 01 | 03 |  |  |  | 3 | 1 | 4 | 1 |  |
| HAL-C-C-S-6103 |  | Pouring Concrete for Tie Beams | 1d | 2026-03-05 A | 2026-03-05 A | HAL-C-C-S-6102 | 100% | 2026-06-13 | 2026-06-14 | Mason [16 h]; Carperter [16 h]; Concrete Mixer [8 h]; Steel Fixer [16 h]; Equipment Operator [16 h]; Construction Cost [9745.95] | 9,745.95 | 9,745.95 | 1 | 05 | 01 | 03 | H1.C.K1.00.RC.F.1110 | PH1-MHR-ST-1030 | 21 | 3 | 1 | 4 | 1 |  |
| HAL-C-C-S-5101 |  | Rebar for column | 7d | 2026-04-27 A | 2026-05-24 A | HAL-C-C-S-1267, HAL-C-C-M-1130 | 100% | 2026-05-18 | 2026-05-25 | Steel Fixer [112 h]; Construction Cost [18494.8] | 18,494.75 | 13,871.06 | 1 | 05 | 01 | 03 |  |  |  | 3 | 1 | 4 | 1 |  |
| HAL-C-C-S-6113 |  | Rebar for Beams | 4d | 2026-04-30 A | 2026-06-17 A | HAL-C-C-S-6103 | 100% | 2026-06-08 | 2026-06-13 | Steel Fixer [64 h]; Construction Cost [11954.6] | 11,954.65 | 11,954.65 | 1 | 05 | 01 | 03 |  |  |  | 3 | 1 | 4 | 1 | 1 |
| HAL-C-C-S-5102 |  | Formwork for column | 4d | 2026-05-17 A | 2026-05-24 A | HAL-C-C-S-5101 | 100% | 2026-07-22 | 2026-07-27 | Carperter [64 h]; Construction Cost [4623.84] | 4,623.84 | 3,467.88 | 1 | 05 | 01 | 03 |  |  |  | 3 | 1 | 4 | 1 |  |
| HAL-C-C-S-5103 |  | Pouring Concrete for column | 1d | 2026-05-23 A | 2026-05-31 A | HAL-C-C-S-5102 | 100% | 2026-06-11 | 2026-06-11 | Mason [16 h]; Carperter [16 h]; Concrete Mixer [8 h]; Steel Fixer [16 h]; Equipment Operator [16 h]; Construction Cost [23118.6] | 23,118.59 | 23,118.59 | 1 | 05 | 01 | 03 | H1.C.K1.00.RC.F.1110 | PH1-MHR-ST-1030 | 21 | 3 | 1 | 4 | 1 |  |
| HAL-C-C-S-6123 |  | Formwork for Beams | 2d | 2026-06-17 A | 2026-06-18 A | HAL-C-C-S-6113, HAL-C-C-S-6113 FF | 100% | 2026-06-30 | 2026-07-02 | Carperter [32 h]; Construction Cost [2988.97] | 2,988.97 | 2,988.97 | 1 | 05 | 01 | 03 |  |  |  | 3 | 1 | 4 | 1 |  |
| HAL-C-C-S-6133 |  | Pouring Concrete for Beams | 1d | 2026-06-20 A | 2026-06-20 A | HAL-C-C-S-6123, HAL-C-C-S-6123 FF | 100% | 2026-07-02 | 2026-07-04 | Mason [16 h]; Carperter [16 h]; Concrete Mixer [8 h]; Steel Fixer [16 h]; Equipment Operator [16 h]; Construction Cost [14943.6] | 14,943.63 | 14,943.63 | 1 | 05 | 01 | 03 | H1.C.K1.00.RC.F.1110 | PH1-MHR-ST-1030 | 21 | 3 | 1 | 4 | 1 |  |
|  | 5 | **STRUCTURAL STEEL** |  | 2026-04-25 | 2026-08-06 |  |  |  |  |  |  |  |  |  |  |  |  |  |  |  |  |  |  |  |
| HAL-C-C-SS-270 |  | Installation of columns | 3d | 2026-04-25 A | 2026-04-26 A | HAL-C-B-SS-150 | 100% | 2026-06-25 | 2026-06-29 | Structural Steel Fixer [80 h]; General Labour [80 h]; Equipment Operator [80 h]; Mobile Crane [40 h]; Construction Cost [164363] | 164,362.65 | 164,362.65 |  | 05 | 08 | 03 |  |  |  |  |  |  |  | 15 |
| HAL-C-C-SS-280 |  | Installation of raft and purlins | 5d | 2026-04-26 A | 2026-04-30 A | HAL-C-C-SS-270 | 100% | 2026-06-29 | 2026-07-05 | Structural Steel Fixer [160 h]; General Labour [160 h]; Mobile Crane [80 h]; Equipment Operator [160 h]; Construction Cost [340061] | 340,060.66 | 340,060.66 |  | 05 | 08 | 03 |  |  |  |  |  |  |  | 15 |
| HAL-C-C-SS-1030 |  | Steel members for external platform | 5d | 2026-05-02 A | 2026-05-25 A | HAL-C-C-SS-1850 | 100% | 2026-07-15 | 2026-07-21 | Construction Cost [27249.1]; General Labour [112 h]; Mobile Crane [56 h]; Structural Steel Fixer [112 h]; Equipment Operator [112 h] | 27,249.09 | 27,249.09 | 1 | 05 | 08 | 03 | H1.C.A1.SA.FI.G.0730 |  |  |  |  |  |  |  |
| HAL-C-C-SS-1850 |  | Steel members for office area | 5d | 2026-05-02 A | 2026-05-25 A | HAL-C-C-SS-1840, HAL-C-C-SS-280 | 100% | 2026-07-04 | 2026-07-09 | Construction Cost [97318.2]; Equipment Operator [112 h]; General Labour [112 h]; Mobile Crane [56 h]; Structural Steel Fixer [112 h] | 97,318.17 | 97,318.17 | 1 | 05 | 08 | 03 | H1.C.A1.SA.FI.G.0730 |  |  |  |  |  |  |  |
| HAL-C-C-SS-1840 |  | Intumescent paint to steel works | 5d | 2026-05-09 A | 2026-05-31 A | HAL-C-C-SS-280 | 100% | 2026-07-05 | 2026-07-11 | Painter [112 h]; Construction Cost [269284] | 269,283.81 | 269,283.81 | 1 | 05 | 08 | 03 | H1.C.A1.SA.FI.G.0730 |  |  |  |  |  |  |  |
| HAL-C-C-SS-310 |  | Installation of roof sheet | 7d | 2026-06-03 A | 2026-06-04 A | HAL-C-C-A-290, HAL-C-C-SS-1840, HAL-C-C-S-6133 | 100% | 2026-08-12 | 2026-08-20 | Roof sheet worker [160 h]; General Labour [160 h]; Mobile Crane [80 h]; Equipment Operator [160 h]; Construction Cost [453414] | 453,414.21 | 453,414.21 |  | 05 | 08 | 03 |  |  |  |  |  |  |  | 15 |
| HAL-C-C-SS-300 |  | Installation of wall sandwich panel | 5d | 2026-06-27 A | 2026-07-30 A | HAL-C-C-A-320 | 100% | 2026-08-09 | 2026-08-15 | Sandwich panel worker [112 h]; General Labour [112 h]; Mobile Crane [56 h]; Equipment Operator [112 h]; Construction Cost [170030] | 170,030.33 | 170,030.33 |  | 05 | 08 | 03 |  |  |  |  |  |  |  | 15 |
| HAL-C-C-SS-1040 |  | Epoxy paint for external platform | 5d | 2026-07-18 A | 2026-07-19 A | HAL-C-C-SS-1030, HAL-C-C-SS-1030 FF | 100% | 2026-08-02 | 2026-08-06 | Painter [80 h]; Construction Cost [6812.27] | 6,812.27 | 6,812.27 | 1 | 05 | 08 | 03 | H1.C.A1.SA.FI.G.0730 |  |  |  |  |  |  |  |
| HAL-C-C-SS-1020 |  | Epoxy paint to steel members at office area | 5d | 2026-08-01 A | 2026-08-06 A | HAL-C-C-SS-1850 | 100% | 2026-08-09 | 2026-08-13 | Painter [112 h]; Construction Cost [24329.5] | 24,329.54 | 24,329.54 | 1 | 05 | 08 | 03 | H1.C.A1.SA.FI.G.0730 |  |  |  |  |  |  |  |

| ID | WBS | Activity | Duration | Start | Finish | Predecessors | Complete | Planned start | Planned finish | Resources | Cost | Actual cost | Remarks | Zone # | Phasing Code Category | Discipline | Project component code | 00 Activity ID |
| --- | --- | --- | --- | --- | --- | --- | --- | --- | --- | --- | --- | --- | --- | --- | --- | --- | --- | --- |
|  | 2 | **ARCHITECTURAL** |  | 2026-05-31 | 2026-10-28 |  |  |  |  |  |  |  |  |  |  |  |  |  |
|  | 1 | **MASONARY WORKS** |  | 2026-05-31 | 2026-06-24 |  |  |  |  |  |  |  |  |  |  |  |  |  |
| HAL-C-C-A-1440 |  | Block work at toilet area | 7d | 2026-05-31 A | 2026-06-24 A | HAL-C-C-A-320 | 100% | 2026-08-17 | 2026-08-25 | Mason [112 h]; Construction Cost [15836.3] | 15,836.32 | 15,836.32 | 1 | 1 | 05 | 02 | 03 |  |
| HAL-C-C-A-290 |  | Block work at factory area | 10d | 2026-05-31 A | 2026-06-24 A | HAL-C-C-SS-280, HAL-C-C-S-1097, HAL-C-B-A-170, HAL-C-C-SS-1040, HAL-C-C-SS-1020 | 100% | 2026-07-29 | 2026-08-10 | AAC panel erector [240 h]; General Labour [240 h]; Equipment Operator [240 h]; Mobile Crane [120 h]; Construction Cost [38856.6] | 38,856.62 | 38,856.62 | 1 |  | 05 | 02 | 03 |  |
| HAL-C-C-A-320 |  | Block work at office area | 7d | 2026-05-31 A | 2026-06-24 A | HAL-C-C-SS-310, HAL-C-C-SS-1850 | 100% | 2026-08-09 | 2026-08-17 | AAC panel erector [160 h]; General Labour [160 h]; Mobile Crane [80 h]; Equipment Operator [160 h]; Construction Cost [9714] | 9,714 | 9,714 | 1 |  | 05 | 02 | 03 |  |
|  | 5 | **WALL FINISHES** |  | 2026-07-05 | 2026-10-19 |  |  |  |  |  |  |  |  |  |  |  |  |  |
| HAL-C-C-A-1450 |  | Internal Wall Plaster | 15d | 2026-07-05 A | 2026-07-16 A | HAL-C-C-A-1440, HAL-C-C-E-873, HAL-C-C-S-1277 | 100% | 2026-07-19 | 2026-08-05 | Mason [240 h]; Construction Cost [29610.2] | 29,610.16 | 29,610.16 |  | 1 | 05 | 02 | 03 | H1.C.A1.SA.FI.G.0710 |
| HAL-C-C-A-1500 |  | Paint to Plaster (Primer, Putty & First Coat) | 7d | 2026-07-22 A | 2026-10-19 A | HAL-C-C-A-1520 | 100% | 2026-09-05 | 2026-09-13 | Painter [112 h]; Construction Cost [26649.5] | 26,649.45 | 26,649.45 |  | 1 | 05 | 02 | 03 | H1.C.A1.SA.FI.G.0730 |
|  | 2 | **CIELING FINISHES** |  | 2026-08-31 | 2026-10-15 |  |  |  |  |  |  |  |  |  |  |  |  |  |
| HAL-C-C-A-1510 |  | Installation of Ceiling Gypsum Board | 5d | 2026-08-31 A | 2026-10-15 A | HAL-C-C-A-1490, HAL-C-C-S-1277 | 100% | 2026-09-09 | 2026-09-15 | Carperter [80 h]; Construction Cost [44650.2] | 44,650.24 | 44,650.24 |  | 1 | 05 | 02 | 03 | H1.C.A1.SA.FI.G.0820 |
|  | 6 | **FLOOR FINISHES** |  | 2026-07-21 | 2026-10-15 |  |  |  |  |  |  |  |  |  |  |  |  |  |
| HAL-C-C-A-1490 |  | Tiles for Toilet | 7d | 2026-07-21 A | 2026-08-02 A | HAL-C-C-A-1630 | 100% | 2026-08-19 | 2026-08-27 | Tile Fixer [112 h]; Construction Cost [48089.6] | 48,089.55 | 48,089.55 |  | 1 | 05 | 02 | 03 | H1.C.A1.SA.FI.G.0640 |
| HAL-C-C-A-1520 |  | Tiles for Office Area | 2d | 2026-08-09 A | 2026-08-13 A | HAL-C-C-A-1510 | 100% | 2026-09-03 | 2026-09-06 | Tile Fixer [32 h]; Construction Cost [25626.5] | 25,626.5 | 25,626.5 |  |  | 05 | 02 | 03 |  |
| HAL-C-C-A-1650 |  | Granite strip | 2d | 2026-08-29 A | 2026-08-31 A | HAL-C-C-A-1830, HAL-C-C-A-1520 | 100% | 2026-09-15 | 2026-09-17 | Tile Fixer [32 h]; Construction Cost [1454.24] | 1,454.24 | 1,454.24 |  | 1 | 05 | 02 | 03 | H1.C.A1.SA.FI.G.0640 |
| HAL-C-C-A-1670 |  | Epoxy paint | 7d | 2026-09-03 A | 2026-10-15 A | HAL-C-C-A-1610 | 100% | 2026-10-04 | 2026-10-12 | Painter [112 h]; Construction Cost [102516] | 102,515.85 | 102,515.85 |  |  | 05 | 02 | 03 |  |
|  | 3 | **DOORS & WINDOWS** |  | 2026-07-11 | 2026-09-10 |  |  |  |  |  |  |  |  |  |  |  |  |  |
| HAL-C-C-A-1830 |  | Window (CW1) | 7d | 2026-07-11 A | 2026-09-10 A | HAL-C-C-SS-300 | 100% | 2026-07-27 | 2026-08-03 | Carperter [112 h]; Construction Cost [90682.8] | 90,682.84 | 90,682.84 |  |  | 05 | 02 | 03 |  |
| HAL-C-C-A-1780 |  | Skylight fixtures installation | 1d | 2026-07-27 A | 2026-08-05 A | HAL-C-C-A-1770 | 100% | 2026-08-23 | 2026-08-24 | Carperter [16 h]; Construction Cost [61929.7] | 61,929.74 | 61,929.74 |  |  | 05 | 02 | 03 |  |
| HAL-C-C-A-1460 |  | Roll up Shutter Door | 1d | 2026-07-29 A | 2026-08-06 A | HAL-C-C-A-1830 | 100% | 2026-08-16 | 2026-08-17 | Carperter [16 h]; Construction Cost [66353.3] | 66,353.3 | 66,353.3 |  |  | 05 | 02 | 03 |  |
| HAL-C-C-A-1470 |  | Supply and install (D5) 1000*2200mm single leaf steel door with door | 1d | 2026-08-09 A | 2026-09-10 A | HAL-C-C-A-1460 | 100% | 2026-08-23 | 2026-08-24 | Carperter [16 h]; Construction Cost [15482.4] | 15,482.44 | 15,482.44 |  |  | 05 | 02 | 03 |  |
| HAL-C-C-A-1770 |  | Supply and install fire rated 45 min (D2) 1200*2200 mm single leaf steel door | 1d | 2026-08-09 A | 2026-09-10 A | HAL-C-C-A-1760 | 100% | 2026-08-27 | 2026-08-29 | Carperter [16 h]; Construction Cost [16146] | 16,145.97 | 16,145.97 |  |  | 05 | 02 | 03 |  |
| HAL-C-C-A-1530 |  | Supply and install (D4) 800*2200 mm single leaf aluminum door with door | 1d | 2026-08-23 A | 2026-09-06 A | HAL-C-C-A-1470 | 100% | 2026-08-31 | 2026-09-01 | Carperter [16 h]; Construction Cost [21896.6] | 21,896.59 | 21,896.59 |  |  | 05 | 02 | 03 |  |
| HAL-C-C-A-1540 |  | Supply and install (D7) 1000*2200 mm single leaf aluminum door with door | 1d | 2026-08-23 A | 2026-09-06 A | HAL-C-C-A-1530 | 100% | 2026-09-01 | 2026-09-02 | Carperter [16 h]; Construction Cost [7520.04] | 7,520.04 | 7,520.04 |  |  | 05 | 02 | 03 |  |
| HAL-C-C-A-1760 |  | Supply and install (D3) 1000*2200 mm single leaf aluminum door with door | 1d | 2026-08-23 A | 2026-09-06 A | HAL-C-C-A-1540 | 100% | 2026-09-02 | 2026-09-03 | Carperter [16 h]; Construction Cost [15482.4] | 15,482.44 | 15,482.44 |  |  | 05 | 02 | 03 |  |

| ID | WBS | Activity | Duration | Start | Finish | Predecessors | Complete | Planned start | Planned finish | Total float | Free float | Resources | Cost | Actual cost | Phasing Code Category | Discipline | Project component code | Ordinal Start | Ordinal Finish | 00 Activity ID | Ordinal Duration | Zone # | Remarks |
| --- | --- | --- | --- | --- | --- | --- | --- | --- | --- | --- | --- | --- | --- | --- | --- | --- | --- | --- | --- | --- | --- | --- | --- |
|  | 4 | **WATER PROOFING WORKS** |  | 2026-07-18 | 2026-07-18 |  |  |  |  |  |  |  |  |  |  |  |  |  |  |  |  |  |  |
| HAL-C-C-A-1630 |  | Waterproofing membrane for toilets | 4d | 2026-07-18 A | 2026-07-18 A | HAL-C-C-M-1130, HAL-C-C-A-1450, HAL-C-C-A-1780 | 100% | 2026-08-26 | 2026-08-31 |  |  | General Labour [64 h]; Construction Cost [4653.33] | 4,653.33 | 4,653.33 | 05 | 02 | 03 |  |  |  |  |  |  |
|  | 7 | **METAL WORKS** |  | 2026-07-29 | 2026-10-21 |  |  |  |  |  |  |  |  |  |  |  |  |  |  |  |  |  |  |
| HAL-C-C-A-1580 |  | Aluminium composite panel | 5d | 2026-07-29 A | 2026-10-03 A | HAL-C-C-A-1660 | 100% | 2026-09-17 | 2026-09-24 |  |  | Steel Fixer [80 h]; General Labour [80 h]; Construction Cost [175670] | 175,670.36 | 175,670.36 | 05 | 02 | 03 |  |  |  |  |  |  |
| HAL-C-C-A-1560 |  | Steel Ladder | 2d | 2026-08-17 A | 2026-08-29 A | HAL-C-C-A-1650 | 100% | 2026-09-12 | 2026-09-14 |  |  | Steel Fixer [32 h]; General Labour [32 h]; Construction Cost [9510.64] | 9,510.64 | 9,510.64 | 05 | 02 | 03 |  |  |  |  |  |  |
| HAL-C-C-A-1570 |  | Galvanised Steel Gratings | 2d | 2026-10-06 A | 2026-10-07 A | HAL-C-C-A-1580 | 100% | 2026-10-17 | 2026-10-19 |  |  | Steel Fixer [32 h]; General Labour [32 h]; Construction Cost [6237.21] | 6,237.21 | 6,237.21 | 05 | 02 | 03 |  |  |  |  |  |  |
| HAL-C-C-A-1660 |  | Steel railing works | 4d | 2026-10-20 A | 2026-10-21 A | HAL-C-C-A-1560 | 100% | 2026-10-26 | 2026-10-29 |  |  | Steel Fixer [64 h]; General Labour [64 h]; Construction Cost [7497.92] | 7,497.92 | 7,497.92 | 05 | 02 | 03 |  |  |  |  |  |  |
|  | 8 | **SPECIALTIES** |  | 2026-09-22 | 2026-10-28 |  |  |  |  |  |  |  |  |  |  |  |  |  |  |  |  |  |  |
| HAL-C-C-A-1590 |  | Installation of fittings | 5d | 2026-09-22 A | 2026-09-24 A | HAL-C-C-A-1570 | 100% | 2026-10-06 | 2026-10-12 |  |  | Plumber [80 h]; Construction Cost [21686.5] | 21,686.47 | 21,686.47 | 05 | 02 | 03 |  |  |  |  |  |  |
| HAL-C-C-A-1610 |  | Furniture Installation | 1d | 2026-10-19 A | 2026-10-19 A | HAL-C-C-A-1820 | 100% | 2026-10-29 | 2026-10-29 |  |  | General Labour [16 h]; Mason [16 h]; Construction Cost [10561.2] | 10,561.24 | 10,561.24 | 05 | 02 | 03 |  |  |  |  |  |  |
| HAL-C-C-A-1820 |  | Identification sign; ID01 & ID02 | 3d | 2026-10-26 | 2026-10-28 | HAL-C-C-A-1590 |  |  |  | 4d | 0d | Mason [48 h]; Construction Cost [9289.46] | 9,289.46 |  | 05 | 02 | 03 |  |  |  |  |  |  |
|  | 3 | **MECHANICAL** |  | 2026-04-01 | 2026-09-24 |  |  |  |  |  |  |  |  |  |  |  |  |  |  |  |  |  |  |
|  | 1 | **HVAC** |  | 2026-06-23 | 2026-09-22 |  |  |  |  |  |  |  |  |  |  |  |  |  |  |  |  |  |  |
|  | 1 | **FIRST STAGE** |  | 2026-06-23 | 2026-08-01 |  |  |  |  |  |  |  |  |  |  |  |  |  |  |  |  |  |  |
| HAL-C-C-M-1070 |  | Installation of HVAC Ducts | 2d | 2026-06-23 A | 2026-08-01 A | HAL-C-C-M-1090 | 100% | 2026-10-07 | 2026-10-10 |  |  | Ductman [32 h]; Construction Cost [141482] | 141,481.82 | 141,481.82 | 05 | 03 | 03 | 0 | 0 | H1.C.A1.0A.MH.G.1040 | 0 | 1 |  |
| HAL-C-C-M-1100 |  | Installation of Duct insulation | 2d | 2026-06-23 A | 2026-08-01 A | HAL-C-C-M-1070 | 100% | 2026-10-10 | 2026-10-12 |  |  | Ductman [32 h]; Construction Cost [18747.3] | 18,747.27 | 18,747.27 | 05 | 03 | 03 |  |  |  |  |  |  |
|  | 2 | **SECOND STAGE** |  | 2026-07-27 | 2026-09-22 |  |  |  |  |  |  |  |  |  |  |  |  |  |  |  |  |  |  |
| HAL-C-C-M-1060 |  | Installation of Exhaust Fans | 2d | 2026-07-27 A | 2026-07-27 A | HAL-C-C-A-1500 | 100% | 2026-09-07 | 2026-09-09 |  |  | AC Technician [32 h]; Construction Cost [9331.24] | 9,331.24 | 9,331.24 | 05 | 03 | 03 | 0 | 0 | H1.C.A1.0A.MH.X.4050 | 0 | 1 |  |
| HAL-C-C-M-1270 |  | Supply, install, test and commission door grilles & exhaust louvers | 2d | 2026-09-02 A | 2026-09-10 A | HAL-C-C-M-1080 | 100% | 2026-09-14 | 2026-09-16 |  |  | Ductman [32 h]; Construction Cost [7188.28] | 7,188.28 | 7,188.28 | 05 | 03 | 03 | 0 | 0 | H1.C.A1.0A.MH.G.3010 | 0 | 1 |  |
| HAL-C-C-M-1090 |  | Installation of Wall Propeller Type Exhaust Fan | 4d | 2026-09-15 A | 2026-09-20 A | HAL-C-C-M-1060 | 100% |  |  |  |  | AC Technician [64 h]; Construction Cost [17417.7] | 17,417.74 | 17,417.74 | 05 | 03 | 03 |  |  |  |  |  |  |
| HAL-C-C-M-1080 |  | Installation of Diffuser | 2d | 2026-09-16 A | 2026-09-22 A | HAL-C-C-M-1100 | 100% | 2026-09-26 | 2026-09-28 |  |  | Ductman [32 h]; Construction Cost [2764.72] | 2,764.72 | 2,764.72 | 05 | 03 | 03 | 0 | 0 | H1.C.A1.0A.MH.G.3010 | 0 | 1 |  |
|  | 2 | **FIRE FIGHTING SYSTEM** |  | 2026-05-23 | 2026-08-22 |  |  |  |  |  |  |  |  |  |  |  |  |  |  |  |  |  |  |
|  | 1 | **FIRST STAGE** |  | 2026-05-23 | 2026-08-06 |  |  |  |  |  |  |  |  |  |  |  |  |  |  |  |  |  |  |
| HAL-C-C-M-1230 |  | Installation of Fire Fighting Pipes (Seamless Black Steel) | 7d | 2026-05-23 A | 2026-08-06 A | HAL-C-C-A-1500 | 100% | 2026-10-22 | 2026-10-31 |  |  | Pipe Fitter [112 h]; Construction Cost [60425.7] | 60,425.74 | 60,425.74 | 05 | 03 | 03 | 0 | 0 | H1.C.A1.0A.MF.G.1010 | 0 | 1 | 1 |
| HAL-C-C-M-1240 |  | Installation of Fire Fighting Valve | 5d | 2026-06-11 A | 2026-08-06 A | HAL-C-C-M-1230 | 100% | 2026-10-13 | 2026-10-19 |  |  | Pipe Fitter [80 h]; Construction Cost [12712.2] | 12,712.18 | 12,712.18 | 05 | 03 | 03 | 0 | 0 | H1.C.A1.0A.MF.G.2010 | 0 | 1 | 1 |

| ID | WBS | Activity | Duration | Start | Finish | Predecessors | Complete | Planned start | Planned finish | Resources | Cost | Actual cost | Ordinal Start | Ordinal Finish | 00 Activity ID | Ordinal Duration | Zone # | Phasing Code Category | Discipline | Project component code | Remarks |
| --- | --- | --- | --- | --- | --- | --- | --- | --- | --- | --- | --- | --- | --- | --- | --- | --- | --- | --- | --- | --- | --- |
|  | 2 | **SECOND STAGE** |  | 2026-06-11 | 2026-08-22 |  |  |  |  |  |  |  |  |  |  |  |  |  |  |  |  |
| HAL-C-C-M-1250 |  | Installation of Fire Hose Cabinet | 3d | 2026-06-11 A | 2026-08-22 A | HAL-C-C-M-1240 | 100% | 2026-10-24 | 2026-10-27 | Pipe Fitter [48 h]; Construction Cost [11147.4] | 11,147.36 | 11,147.36 | 0 | 0 | H1.C.A1.0A.MF.G.3010 | 0 | 1 | 05 | 03 | 03 |  |
| HAL-C-C-M-1300 |  | Supply, install, test and commission Fire Department Connection(FDC) | 3d | 2026-06-11 A | 2026-08-04 A | HAL-C-C-M-1270 | 100% | 2026-10-26 | 2026-10-29 | Pipe Fitter [48 h]; Construction Cost [2598.84] | 2,598.84 | 2,598.84 | 0 | 0 | H1.C.A1.0A.MF.G.3010 | 0 | 1 | 05 | 03 | 03 |  |
|  | 3 | **SEWER AND DRAINAGE SYSTEM** |  | 2026-04-01 | 2026-09-24 |  |  |  |  |  |  |  |  |  |  |  |  |  |  |  |  |
|  | 1 | **FIRST STAGE** |  | 2026-04-01 | 2026-08-04 |  |  |  |  |  |  |  |  |  |  |  |  |  |  |  |  |
| HAL-C-C-M-1130 |  | Installation of Sanitary Waste / Drainage Pipes | 4d | 2026-04-01 A | 2026-04-19 A | HAL-C-C-S-1237 | 100% | 2026-04-22 | 2026-04-26 | Plumber [64 h]; Construction Cost [14362.4] | 14,362.41 | 14,362.41 | 0 | 0 | H1.C.K1.00.MP.G.1020 | 0 | 1 | 05 | 03 | 03 |  |
| HAL-C-C-M-1150 |  | Installation of Floor Drain | 2d | 2026-06-11 A | 2026-08-04 A | HAL-C-C-M-1130, HAL-C-C-A-1490 | 100% | 2026-09-22 | 2026-09-26 | Plumber [32 h]; Construction Cost [10616.5] | 10,616.53 | 10,616.53 |  |  |  |  | 1 | 05 | 03 | 03 |  |
| HAL-C-C-M-1310 |  | Installation of Trench drain | 5d | 2026-06-11 A | 2026-08-04 A | HAL-C-C-M-1150 | 100% | 2026-09-26 | 2026-10-01 | Plumber [80 h]; Construction Cost [11379.6] | 11,379.59 | 11,379.59 |  |  |  |  |  | 05 | 03 | 03 |  |
|  | 2 | **SECOND STAGE** |  | 2026-07-11 | 2026-09-24 |  |  |  |  |  |  |  |  |  |  |  |  |  |  |  |  |
| HAL-C-C-M-1170 |  | Installation of Roof Vent Cap | 2d | 2026-07-11 A | 2026-08-22 A | HAL-C-C-M-1160 | 100% | 2026-09-10 | 2026-09-13 | Pipe Fitter [32 h]; Construction Cost [829.41] | 829.41 | 829.41 |  |  |  |  |  | 05 | 03 | 03 |  |
| HAL-C-C-M-1110 |  | Installation of Electric Water Heater | 2d | 2026-08-04 A | 2026-08-04 A | HAL-C-C-M-1310 | 100% | 2026-08-30 | 2026-09-01 | Plumber [32 h]; Construction Cost [1592.48] | 1,592.48 | 1,592.48 | 0 | 0 | H1.C.K1.00.MP.G.1030 | 0 | 1 | 05 | 03 | 03 |  |
| HAL-C-C-M-1160 |  | Installation of Water Tap | 2d | 2026-08-24 A | 2026-09-16 A | HAL-C-C-M-1140, HAL-C-C-M-1200 | 100% | 2026-09-19 | 2026-09-21 | Plumber [32 h]; Construction Cost [2654.13] | 2,654.13 | 2,654.13 |  |  |  |  |  | 05 | 03 | 03 |  |
| HAL-C-C-M-1120 |  | Installation of Sanitary Fixture and Accessories | 4d | 2026-09-17 A | 2026-09-24 A | HAL-C-C-M-1110 | 100% | 2026-09-21 | 2026-09-26 | Plumber [64 h]; Construction Cost [16243] | 16,243.04 | 16,243.04 | 0 | 0 | H1.C.K1.00.MP.G.2040 | 0 | 1 | 05 | 03 | 03 |  |
| HAL-C-C-M-1140 |  | Installation of Lavotary /Wash Basin | 2d | 2026-09-17 A | 2026-09-24 A | HAL-C-C-M-1110, HAL-C-C-M-1120 | 100% | 2026-09-27 | 2026-09-28 | Plumber [32 h]; Construction Cost [20348.3] | 20,348.35 | 20,348.35 |  |  |  |  | 1 | 05 | 03 | 03 |  |
| HAL-C-C-M-1200 |  | Installation of Bib Tap | 2d | 2026-09-17 A | 2026-09-24 A | HAL-C-C-M-1120, HAL-C-C-M-1140 | 100% | 2026-09-29 | 2026-09-30 | Plumber [32 h]; Construction Cost [2211.78] | 2,211.78 | 2,211.78 |  |  |  |  |  | 05 | 03 | 03 |  |
|  | 4 | **WATER SUPPLY SYSTEM** |  | 2026-06-24 | 2026-08-04 |  |  |  |  |  |  |  |  |  |  |  |  |  |  |  |  |
|  | 1 | **FIRST STAGE** |  | 2026-06-24 | 2026-08-04 |  |  |  |  |  |  |  |  |  |  |  |  |  |  |  |  |
| HAL-C-C-M-1220 |  | Installation of Water Supply Pipes | 4d | 2026-06-24 A | 2026-08-04 A | HAL-C-C-A-1500 | 100% | 2026-09-30 | 2026-10-05 | Plumber [64 h]; Construction Cost [19520.2] | 19,520.16 | 19,520.16 | 0 | 0 | H1.C.K1.00.MP.G.1010 | 0 | 1 | 05 | 03 | 03 |  |
| HAL-C-C-M-1210 |  | Installation of Water Supply Valve | 2d | 2026-08-01 A | 2026-08-04 A | HAL-C-C-M-1220 | 100% | 2026-09-08 | 2026-09-10 | Plumber [32 h]; Construction Cost [15736.8] | 15,736.79 | 15,736.79 | 0 | 0 | H1.C.K1.00.MP.G.2010 | 0 | 1 | 05 | 03 | 03 |  |
|  | 2 | **SECOND STAGE** |  | 2026-07-04 | 2026-08-04 |  |  |  |  |  |  |  |  |  |  |  |  |  |  |  |  |
| HAL-C-C-M-1260 |  | Capped connection | 5d | 2026-07-04 A | 2026-08-04 A | HAL-C-C-M-1210 | 100% | 2026-09-10 | 2026-09-16 | Plumber [80 h]; Construction Cost [287.53] | 287.53 | 287.53 |  |  |  |  |  | 05 | 03 | 03 |  |
|  | 4 | **ELECTRICAL** |  | 2026-04-01 | 2026-10-26 |  |  |  |  |  |  |  |  |  |  |  |  |  |  |  |  |
|  | 1 | **FIRST STAGE** |  | 2026-04-01 | 2026-10-12 |  |  |  |  |  |  |  |  |  |  |  |  |  |  |  |  |
| HAL-C-C-E-803 |  | Installation of Earthing and Grounding | 4d | 2026-04-01 A | 2026-10-12 A | HAL-C-C-E-913 SS | 100% | 2026-10-27 | 2026-11-01 | Electrician [64 h]; Construction Cost [17002.4] | 17,002.41 | 17,002.41 |  |  | H1.C.K1.00.EM.G.2040 |  | 1 | 05 | 04 | 03 | 1 |
| HAL-C-C-E-873 |  | Installation of Sleeves & Power outlet | 8d | 2026-04-01 A | 2026-07-11 A | HAL-C-C-A-1440 | 100% | 2026-09-09 | 2026-09-19 | Electrician [128 h]; Construction Cost [2853.19] | 2,853.19 | 2,853.19 |  |  |  |  | 1 | 05 | 04 | 03 | 1 |
| HAL-C-C-E-853 |  | Installation of Conduites for Lighting Fixture | 4d | 2026-05-19 A | 2026-06-02 A | HAL-C-C-E-823 | 100% | 2026-12-28 | 2027-01-02 | Electrician [64 h]; Construction Cost [3983.66] | 3,983.66 | 3,983.66 |  |  | H1.C.K1.00.EM.G.2030 |  | 1 | 05 | 04 | 03 |  |
| HAL-C-C-E-833 |  | Installation of Conduits and wiring outlets - Fire Alarm System | 4d | 2026-05-20 A | 2026-06-02 A | HAL-C-C-E-893 | 100% | 2026-09-12 | 2026-09-16 | Electrician [64 h]; Construction Cost [2026.84] | 2,026.84 | 2,026.84 |  |  | H1.C.K1.00.EL.G.1020 |  | 1 | 05 | 04 | 03 |  |
| HAL-C-C-E-923 |  | Installation of Wires | 4d | 2026-06-25 A | 2026-08-29 A | HAL-C-C-E-853 | 100% | 2026-09-06 | 2026-09-10 | Electrician [64 h]; Construction Cost [7966.69] | 7,966.69 | 7,966.69 |  |  |  |  |  | 05 | 04 | 03 |  |
| HAL-C-C-E-913 |  | Installation of LV Cables | 2d | 2026-09-05 A | 2026-10-12 A | HAL-C-C-E-903 SS | 100% | 2026-10-04 | 2026-10-06 | Electrician [64 h]; Construction Cost [31551] | 31,550.99 | 31,550.99 |  |  |  |  |  | 05 | 04 | 03 |  |

| ID | WBS | Activity | Duration | Start | Finish | Predecessors | Complete | Remaining | Planned start | Planned finish | Total float | Free float | Resources | Cost | Actual cost | Phasing Code Category | Discipline | Project component code | 00 Activity ID | Zone # | AMH Tender Act. ID | Tender Original Duration |
| --- | --- | --- | --- | --- | --- | --- | --- | --- | --- | --- | --- | --- | --- | --- | --- | --- | --- | --- | --- | --- | --- | --- |
|  | 2 | **SECOND STAGE** |  | 2026-06-17 | 2026-10-26 |  |  |  |  |  |  |  |  |  |  |  |  |  |  |  |  |  |
| HAL-C-C-E-1340 |  | Installation of CCTV System | 2d | 2026-06-17 A | 2026-10-12 A | HAL-C-C-E-943 | 100% |  | 2026-11-02 | 2026-11-04 |  |  | Plumber [112 h]; Construction Cost [66177.6] | 66,177.58 | 66,177.58 | 05 | 04 | 03 |  |  |  |  |
| HAL-C-C-E-963 |  | Installation of Access Control System | 2d | 2026-06-17 A | 2026-10-26 | HAL-C-C-E-903 | 80% | 0.4d | 2026-11-04 | 2026-11-07 | 6.8d | 0d | Electrician [64 h]; Construction Cost [24315.4] | 24,315.41 | 19,452.33 | 05 | 04 | 03 | H1.C.K1.00.EM.G.2040 | 1 |  |  |
| HAL-C-C-E-933 |  | Installation of LP-1 Panel | 2d | 2026-07-25 A | 2026-09-10 A | HAL-C-C-E-883 | 100% |  | 2026-10-06 | 2026-10-08 |  |  | Electrician [32 h]; Construction Cost [15128.5] | 15,128.55 | 15,128.55 | 05 | 04 | 03 | H1.C.K1.00.EM.G.2020 | 1 |  |  |
| HAL-C-C-E-903 |  | Installation of Telephone Cabinet | 2d | 2026-07-29 A | 2026-10-01 A | HAL-C-C-E-943 | 100% |  | 2026-10-17 | 2026-10-19 |  |  | Electrician [32 h]; Construction Cost [23299.8] | 23,299.84 | 23,299.84 | 05 | 04 | 03 |  | 1 |  |  |
| HAL-C-C-E-1350 |  | Installation of Solar power plant | 7d | 2026-08-12 A | 2026-10-01 A | HAL-C-B-E-730 | 100% |  | 2026-08-25 | 2026-09-01 |  |  | Plumber [112 h]; Construction Cost [218966] | 218,965.89 | 218,965.89 | 05 | 04 | 03 |  |  |  |  |
| HAL-C-C-E-863 |  | Installation of Wiring Devices | 4d | 2026-08-29 A | 2026-09-24 A | HAL-C-C-E-873 | 100% |  | 2026-09-06 | 2026-09-09 |  |  | Electrician [64 h]; Construction Cost [20742.2] | 20,742.16 | 20,742.16 | 05 | 04 | 03 | H1.C.K1.00.EM.G.3020 | 1 |  |  |
| HAL-C-C-E-893 |  | Installation of Disconnect Switches | 2d | 2026-08-29 A | 2026-09-24 A | HAL-C-C-E-863 | 100% |  | 2026-09-10 | 2026-09-12 |  |  | Electrician [32 h]; Construction Cost [25808.4] | 25,808.36 | 25,808.36 | 05 | 04 | 03 |  |  |  |  |
| HAL-C-C-E-943 |  | Installation of PP-AC panel | 2d | 2026-09-01 A | 2026-10-12 A | HAL-C-C-E-933 | 100% |  | 2026-09-28 | 2026-09-30 |  |  | Electrician [32 h]; Construction Cost [18214] | 18,213.99 | 18,213.99 | 05 | 04 | 03 | H1.C.K1.00.EM.G.2020 | 1 |  |  |
| HAL-C-C-E-883 |  | Installation of Main Distribution Board | 2d | 2026-09-03 A | 2026-10-12 A | HAL-C-C-E-843 | 100% |  | 2026-09-29 | 2026-10-01 |  |  | Electrician [32 h]; Construction Cost [25479.7] | 25,479.66 | 25,479.66 | 05 | 04 | 03 | H1.C.K1.00.EM.G.2020 | 1 |  |  |
| HAL-C-C-E-843 |  | Installation of Lighting fixtures | 4d | 2026-09-10 A | 2026-10-12 A | HAL-C-C-E-923 | 100% |  | 2026-09-30 | 2026-10-05 |  |  | Electrician [64 h]; Construction Cost [59751.1] | 59,751.14 | 59,751.14 | 05 | 04 | 03 | H1.C.K1.00.EM.G.3010 | 1 |  |  |
| HAL-C-C-E-823 |  | Installation of Fire Detectors & Accessories | 4d | 2026-09-16 A | 2026-10-12 A | HAL-C-C-E-813 SS | 100% |  | 2026-09-26 | 2026-09-30 |  |  | Electrician [64 h]; Construction Cost [31219.2] | 31,219.23 | 31,219.23 | 05 | 04 | 03 | H1.C.K1.00.EL.G.3020 | 1 |  |  |
| HAL-C-C-E-973 |  | Monitor Modules for Fire Alarm | 2d | 2026-09-22 A | 2026-10-26 | HAL-C-C-E-963 SS | 70% | 0.6d | 2026-10-07 | 2026-10-10 | 7d | 0d | Electrician [32 h]; Construction Cost [3760.02] | 3,760.02 | 2,632.01 | 05 | 04 | 03 | H1.C.K1.00.EM.G.2040 | 1 |  |  |
| HAL-C-C-E-993 |  | Firewarning flash light with sounder; wall mounted, Weather proof | 2d | 2026-09-22 A | 2026-09-24 A | HAL-C-C-E-983 SS | 100% |  | 2026-10-07 | 2026-10-10 |  |  | Electrician [32 h]; Construction Cost [2963.79] | 2,963.79 | 2,963.79 | 05 | 04 | 03 | H1.C.K1.00.EM.G.2040 | 1 |  |  |
| HAL-C-C-E-813 |  | Installation of Fire Alarm Control Panel | 4d | 2026-09-24 A | 2026-10-12 A | HAL-C-C-E-833, HAL-C-B-E-353 | 100% |  | 2026-10-04 | 2026-10-08 |  |  | Electrician [64 h]; Construction Cost [16216.6] | 16,216.62 | 16,216.62 | 05 | 04 | 03 | H1.C.K1.00.EL.X.4120 | 1 |  |  |
| HAL-C-C-E-983 |  | Line Isolator Modules for Fire Alarm | 2d | 2026-09-24 A | 2026-10-12 A | HAL-C-C-E-973 SS | 100% |  | 2026-10-07 | 2026-10-10 |  |  | Electrician [32 h]; Construction Cost [163.42] | 163.42 | 163.42 | 05 | 04 | 03 | H1.C.K1.00.EM.G.2040 | 1 |  |  |
|  | 3 | **BLOCK A** |  | 2026-02-03 | 2026-10-28 |  |  |  |  |  |  |  |  |  |  |  |  |  |  |  |  |  |
|  | 1 | **STRUCTURAL** |  | 2026-02-03 | 2026-08-26 |  |  |  |  |  |  |  |  |  |  |  |  |  |  |  |  |  |
|  | 1 | **FOOTING** |  | 2026-02-03 | 2026-05-25 |  |  |  |  |  |  |  |  |  |  |  |  |  |  |  |  |  |
| HAL-C-A-S-210 |  | Excavation for footings | 6.12d | 2026-02-03 A | 2026-05-16 A | HAL-C-C-S-250 | 100% |  | 2026-02-24 | 2026-03-04 |  |  | General Labour [112 h]; Equipment Operator [112 h]; Truck [56 h]; Excavator [56 h]; Mini Roller Compactor [56 h]; Construction Cost [132992] | 132,992.28 | 132,992.28 | 05 | 01 | 01 | H1.C.K1.00.SW.F.1010 | 1 | PH1-MHR-ST-640 | 12 |
| HAL-C-A-S-1037 |  | Anti Termite Below Footings | 1d | 2026-02-10 A | 2026-05-20 A | HAL-C-A-S-210 | 100% |  | 2026-03-03 | 2026-03-04 |  |  | Mason [16 h]; Construction Cost [8441.61] | 8,441.61 | 8,441.61 | 05 | 01 | 01 | H1.C.K1.00.SW.F.1030 | 1 | PH1-MHR-ST-1020 | 10 |
| HAL-C-A-S-797 |  | Lean Concrete Below Footings | 2d | 2026-02-10 A | 2026-05-20 A | HAL-C-A-S-947 | 100% |  | 2026-03-05 | 2026-03-08 |  |  | Mason [32 h]; Construction Cost [8238.87] | 8,238.87 | 8,238.87 | 05 | 01 | 01 | H1.C.K1.00.SW.F.1030 | 1 | PH1-MHR-ST-1020 | 10 |
| HAL-C-A-S-947 |  | Vapour Barrier for Footings | 1d | 2026-02-10 A | 2026-05-20 A | HAL-C-A-S-1037 | 100% |  | 2026-03-04 | 2026-03-05 |  |  | General Labour [16 h]; Construction Cost [6030.16] | 6,030.16 | 6,030.16 | 05 | 01 | 01 | H1.C.K1.00.SW.F.1040 | 1 | PH1-MHR-ST-1080 | 15 |
| HAL-C-A-S-857 |  | Formwork for Footings | 4d | 2026-02-17 A | 2026-05-24 A | HAL-C-A-S-847 | 100% |  | 2026-03-24 | 2026-03-29 |  |  | Carperter [64 h]; Construction Cost [23267.9] | 23,267.89 | 16,287.52 | 05 | 01 | 01 |  | 1 |  |  |
| HAL-C-A-S-847 |  | Rebar for Footings | 6d | 2026-02-18 A | 2026-05-24 A | HAL-C-A-S-797 | 100% |  | 2026-03-16 | 2026-03-24 |  |  | Steel Fixer [64 h]; Construction Cost [93071.6] | 93,071.56 | 65,150.09 | 05 | 01 | 01 |  | 1 |  |  |
| HAL-C-A-S-807 |  | Pouring Concrete for Footings | 1d | 2026-02-25 A | 2026-05-25 A | HAL-C-A-S-857 | 100% |  | 2026-03-28 | 2026-03-29 |  |  | Carperter [16 h]; Mason [16 h]; Steel Fixer [16 h]; Concrete Mixer [8 h]; Equipment Operator [16 h]; Construction Cost [116339] | 116,339.45 | 116,339.45 | 05 | 01 | 01 | H1.C.K1.00.RC.F.1010 | 1 | PH1-MHR-ST-1030 | 21 |

| ID | WBS | Activity | Duration | Start | Finish | Predecessors | Complete | Planned start | Planned finish | Resources | Cost | Actual cost | Zone # | Phasing Code Category | Discipline | Project component code | 00 Activity ID | AMH Tender Act. ID | Tender Original Duration | Remarks | project summary-6 | PS (su & rbf)-6 | New code for weekly report-6 | New discipline code-6 |
| --- | --- | --- | --- | --- | --- | --- | --- | --- | --- | --- | --- | --- | --- | --- | --- | --- | --- | --- | --- | --- | --- | --- | --- | --- |
|  | 2 | **COLUMN NECK** |  | 2026-02-24 | 2026-06-22 |  |  |  |  |  |  |  |  |  |  |  |  |  |  |  |  |  |  |  |
| HAL-C-A-S-897 |  | Rebar for column neck | 2d | 2026-02-24 A | 2026-05-24 A | HAL-C-A-S-807 | 100% | 2026-03-29 | 2026-03-31 | Steel Fixer [32 h]; Construction Cost [21993.7] | 21,993.66 | 15,395.56 | 1 | 05 | 01 | 01 |  |  |  |  |  |  |  |  |
| HAL-C-A-S-907 |  | Formwork for column neck | 2d | 2026-02-28 A | 2026-06-02 A | HAL-C-A-S-897 | 100% | 2026-04-06 | 2026-04-08 | Carperter [32 h]; Construction Cost [5498.72] | 5,498.72 | 5,498.72 | 1 | 05 | 01 | 01 |  |  |  |  |  |  |  |  |
| HAL-C-A-S-887 |  | Pouring Concrete for column neck | 1d | 2026-03-02 A | 2026-06-02 A | HAL-C-A-S-907 | 100% | 2026-04-08 | 2026-04-09 | Mason [16 h]; Carperter [16 h]; Concrete Mixer [8 h]; Steel Fixer [16 h]; Equipment Operator [16 h]; Construction Cost [27492.4] | 27,492.39 | 27,492.39 | 1 | 05 | 01 | 01 | H1.C.K1.00.RC.F.1110 | PH1-MHR-ST-1030 | 21 |  |  |  |  |  |
| HAL-C-A-S-937 |  | Damp proof /Bitumin paint on Footings & column neck | 2d | 2026-03-28 A | 2026-06-04 A | HAL-C-A-S-887 | 100% | 2026-04-28 | 2026-04-30 | Painter [32 h]; Construction Cost [6903.81] | 6,903.81 | 6,903.81 | 1 | 05 | 01 | 01 | H1.C.K1.00.SW.F.1050 | PH1-MHR-ST-1080 | 15 |  |  |  |  |  |
| HAL-C-A-S-997 |  | Backfilling / Compaction up to Bottom of Grade Beams | 12d | 2026-03-29 A | 2026-06-22 A | HAL-C-A-S-937 | 100% | 2026-04-30 | 2026-05-14 | General Labour [256 h]; Truck [128 h]; Mini Roller Compactor [128 h]; Equipment Operator [256 h]; Wheel Loader [128 h]; Construction Cost [32707.9] | 32,707.87 | 32,707.87 | 1 | 05 | 01 | 01 | H1.C.K1.00.SW.F.1060 | PH1-MHR-ST-645 | 15 | 1 |  |  |  |  |
|  | 3 | **GRADE BEAM** |  | 2026-06-13 | 2026-06-30 |  |  |  |  |  |  |  |  |  |  |  |  |  |  |  |  |  |  |  |
| HAL-C-A-S-1047 |  | Anti Termite Below Grade Beams | 1d | 2026-06-13 A | 2026-06-14 A | HAL-C-A-S-997 | 100% | 2026-07-09 | 2026-07-11 | Mason [16 h]; Construction Cost [8441.61] | 8,441.61 | 8,441.61 | 1 | 05 | 01 | 01 | H1.C.K1.00.SW.F.1030 | PH1-MHR-ST-1020 | 10 | 1 |  |  |  |  |
| HAL-C-A-S-817 |  | Lean Concrete Below Grade Beams | 2d | 2026-06-13 A | 2026-06-14 A | HAL-C-A-S-967 | 100% | 2026-07-13 | 2026-07-15 | Mason [32 h]; Construction Cost [8238.87] | 8,238.87 | 8,238.87 | 1 | 05 | 01 | 01 | H1.C.K1.00.SW.F.1130 | PH1-MHR-ST-1020 | 10 | 1 |  |  |  |  |
| HAL-C-A-S-967 |  | Vapour barrier for Grade Beams | 2d | 2026-06-13 A | 2026-06-14 A | HAL-C-A-S-1047 | 100% | 2026-07-11 | 2026-07-13 | General Labour [32 h]; Construction Cost [4019.9] | 4,019.9 | 4,019.9 | 1 | 05 | 01 | 01 | H1.C.K1.00.SW.F.1040 | PH1-MHR-ST-1080 | 15 | 1 |  |  |  |  |
| HAL-C-A-S-1027 |  | Anchor bolts installation | 2d | 2026-06-17 A | 2026-06-23 A | HAL-C-A-S-877 SS | 100% | 2026-07-07 | 2026-07-09 | Carperter [32 h]; Construction Cost [5667.68] | 5,667.68 | 5,667.68 | 1 | 05 | 01 | 01 |  |  |  |  |  |  |  |  |
| HAL-C-A-S-867 |  | Rebar for Grade Beams | 5d | 2026-06-17 A | 2026-06-23 A | HAL-C-A-S-817 | 100% | 2026-07-16 | 2026-07-22 | Steel Fixer [80 h]; Construction Cost [24993.1] | 24,993.07 | 24,993.07 | 1 | 05 | 01 | 01 |  |  |  |  |  |  |  |  |
| HAL-C-A-S-877 |  | Formwork for Grade Beams | 2d | 2026-06-17 A | 2026-06-23 A | HAL-C-A-S-867 | 100% | 2026-07-22 | 2026-07-25 | Carperter [32 h]; Construction Cost [6248.27] | 6,248.27 | 6,248.27 | 1 | 05 | 01 | 01 |  |  |  |  |  |  |  |  |
| HAL-C-A-S-827 |  | Pouring Concrete for Grade Beams | 1d | 2026-06-24 A | 2026-06-24 A | HAL-C-A-S-877, HAL-C-A-S-1027 | 100% | 2026-07-09 | 2026-07-11 | Mason [16 h]; Carperter [16 h]; Concrete Mixer [8 h]; Steel Fixer [16 h]; Equipment Operator [16 h]; Construction Cost [31241.3] | 31,241.35 | 31,241.35 | 1 | 05 | 01 | 01 | H1.C.K1.00.RC.F.1110 | PH1-MHR-ST-1030 | 21 |  |  |  |  |  |
| HAL-C-A-S-977 |  | Damp proof /Bitumin paint on Grade Beams | 5d | 2026-06-25 A | 2026-06-30 A | HAL-C-A-S-827 | 100% | 2026-07-15 | 2026-07-21 | Painter [80 h]; Construction Cost [6903.81] | 6,903.81 | 6,903.81 | 1 | 05 | 01 | 01 | H1.C.K1.00.SW.F.1050 | PH1-MHR-ST-1080 | 15 |  |  |  |  |  |
|  | 5 | **SLAB ON GRADE** |  | 2026-06-17 | 2026-08-26 |  |  |  |  |  |  |  |  |  |  |  |  |  |  |  |  |  |  |  |
| HAL-C-A-S-1017 |  | Concrete pad | 7d | 2026-06-17 A | 2026-06-20 A | HAL-C-A-A-260 | 100% | 2026-10-05 | 2026-10-13 | Mason [112 h]; Construction Cost [1803.82] | 1,803.82 | 1,803.82 |  | 05 | 01 | 01 |  |  |  |  |  |  |  |  |
| HAL-C-A-S-1007 |  | Backfilling / Compaction for Slab on Grade | 12d | 2026-07-01 A | 2026-07-16 A | HAL-C-A-S-977 | 100% | 2026-07-21 | 2026-08-04 | Mini Roller Compactor [128 h]; General Labour [256 h]; Equipment Operator [256 h]; Wheel Loader [128 h]; Truck [128 h]; Construction Cost [32707.9] | 32,707.87 | 32,707.87 | 1 | 05 | 01 | 01 |  |  |  |  |  |  |  |  |
| HAL-C-A-S-837 |  | Pouring Concrete for Ground Slab | 4d | 2026-08-23 A | 2026-08-26 A | HAL-C-A-S-987 | 100% | 2026-09-02 | 2026-09-06 | Mason [64 h]; Carperter [64 h]; Steel Fixer [64 h]; Concrete Mixer [32 h]; Equipment Operator [64 h]; Construction Cost [304092] | 304,091.64 | 304,091.64 | 1 | 05 | 01 | 01 | H1.C.A1.06.RC.G.1210 | PH1-MHR-ST-496 | 24 |  |  |  |  |  |
| HAL-C-A-S-957 |  | Anti Termite Treatment below Ground Slab | 1d | 2026-08-23 A | 2026-08-26 A | HAL-C-A-S-1007 | 100% | 2026-08-30 | 2026-08-30 | General Labour [16 h]; Construction Cost [11255.5] | 11,255.49 | 11,255.49 | 1 | 05 | 01 | 01 | H1.C.A1.06.SW.F.1220 | PH1-MHR-ST-645 | 15 |  |  |  |  |  |
| HAL-C-A-S-987 |  | Vapour barrier for below Ground Slab | 2d | 2026-08-23 A | 2026-08-26 A | HAL-C-A-S-957 | 100% | 2026-08-31 | 2026-09-01 | General Labour [32 h]; Construction Cost [10050.1] | 10,050.07 | 10,050.07 | 1 | 05 | 01 | 01 |  |  |  |  |  |  |  |  |
|  | 4 | **COLUMNS & BEAMS** |  | 2026-03-28 | 2026-08-15 |  |  |  |  |  |  |  |  |  |  |  |  |  |  |  |  |  |  |  |
| HAL-C-A-S-6101 |  | Rebar for Tie Beams | 4d | 2026-03-28 A | 2026-03-31 A | HAL-C-A-S-5103 | 100% | 2026-07-23 | 2026-07-28 | Steel Fixer [64 h]; Construction Cost [7796.52] | 7,796.52 | 7,796.52 | 1 | 05 | 01 | 01 |  |  |  |  | 3 | 1 | 4 | 1 |
| HAL-C-A-S-6102 |  | Formwork for Tie Beams | 2d | 2026-03-29 A | 2026-04-01 A | HAL-C-A-S-6101 | 100% | 2026-07-28 | 2026-07-30 | Carperter [32 h]; Construction Cost [1949.44] | 1,949.44 | 1,949.44 | 1 | 05 | 01 | 01 |  |  |  |  | 3 | 1 | 4 | 1 |
| HAL-C-A-S-6103 |  | Pouring Concrete for Tie Beams | 1d | 2026-04-02 A | 2026-04-02 A | HAL-C-A-S-6102 | 100% | 2026-07-30 | 2026-08-01 | Mason [16 h]; Carperter [16 h]; Concrete Mixer [8 h]; Steel Fixer [16 h]; Equipment Operator [16 h]; Construction Cost [9745.95] | 9,745.95 | 9,745.95 | 1 | 05 | 01 | 01 | H1.C.K1.00.RC.F.1110 | PH1-MHR-ST-1030 | 21 |  | 3 | 1 | 4 | 1 |
| HAL-C-A-S-5101 |  | Rebar for column | 7d | 2026-07-20 A | 2026-07-23 A | HAL-C-A-S-1007 | 100% | 2026-07-30 | 2026-08-08 | Steel Fixer [112 h]; Construction Cost [18494.8] | 18,494.75 | 18,494.75 | 1 | 05 | 01 | 01 |  |  |  |  | 3 | 1 | 4 | 1 |
| HAL-C-A-S-5102 |  | Formwork for column | 4d | 2026-07-27 A | 2026-08-01 A | HAL-C-A-S-5101 | 100% | 2026-08-09 | 2026-08-12 | Carperter [64 h]; Construction Cost [4623.84] | 4,623.84 | 4,623.84 | 1 | 05 | 01 | 01 |  |  |  |  | 3 | 1 | 4 | 1 |
| HAL-C-A-S-5103 |  | Pouring Concrete for column | 1d | 2026-07-28 A | 2026-08-01 A | HAL-C-A-S-5102 | 100% | 2026-08-13 | 2026-08-13 | Mason [16 h]; Carperter [16 h]; Concrete Mixer [8 h]; Steel Fixer [16 h]; Equipment Operator [16 h]; Construction Cost [23118.6] | 23,118.59 | 23,118.59 | 1 | 05 | 01 | 01 | H1.C.K1.00.RC.F.1110 | PH1-MHR-ST-1030 | 21 |  | 3 | 1 | 4 | 1 |
| HAL-C-A-S-6113 |  | Rebar for Beams | 4d | 2026-08-01 A | 2026-08-13 A | HAL-C-A-S-6103 | 100% | 2026-08-12 | 2026-08-16 | Steel Fixer [64 h]; Construction Cost [11954.6] | 11,954.65 | 11,954.65 | 1 | 05 | 01 | 01 |  |  |  |  | 3 | 1 | 4 | 1 |
| HAL-C-A-S-6123 |  | Formwork for Beams | 2d | 2026-08-11 A | 2026-08-15 A | HAL-C-A-S-6113, HAL-C-A-S-6113 FF | 100% | 2026-08-25 | 2026-08-27 | Carperter [32 h]; Construction Cost [2988.97] | 2,988.97 | 2,988.97 | 1 | 05 | 01 | 01 |  |  |  |  | 3 | 1 | 4 | 1 |
| HAL-C-A-S-6133 |  | Pouring Concrete for Beams | 1d | 2026-08-15 A | 2026-08-15 A | HAL-C-A-S-6123, HAL-C-A-S-6123 FF | 100% | 2026-08-19 | 2026-08-19 | Mason [16 h]; Carperter [16 h]; Concrete Mixer [8 h]; Steel Fixer [16 h]; Equipment Operator [16 h]; Construction Cost [14943.6] | 14,943.63 | 14,943.63 | 1 | 05 | 01 | 01 | H1.C.K1.00.RC.F.1110 | PH1-MHR-ST-1030 | 21 |  | 3 | 1 | 4 | 1 |

| ID | WBS | Activity | Duration | Start | Finish | Predecessors | Complete | Planned start | Planned finish | Resources | Cost | Actual cost | Remarks | 00 Activity ID | Zone # | Phasing Code Category | Discipline | Project component code |
| --- | --- | --- | --- | --- | --- | --- | --- | --- | --- | --- | --- | --- | --- | --- | --- | --- | --- | --- |
|  | 5 | **STRUCTURAL STEEL** |  | 2026-06-13 | 2026-09-14 |  |  |  |  |  |  |  |  |  |  |  |  |  |
| HAL-C-A-SS-1030 |  | Steel members for external platform | 5d | 2026-06-13 A | 2026-07-23 A | HAL-C-A-A-1440 | 100% | 2026-09-12 | 2026-09-17 | Construction Cost [27249.1]; General Labour [112 h]; Mobile Crane [56 h]; Structural Steel Fixer [112 h]; Equipment Operator [112 h] | 27,249.09 | 27,249.09 | 1 | H1.C.A1.SA.FI.G.0730 | 1 | 05 | 08 | 01 |
| HAL-C-A-A-210 |  | Installation of columns | 3d | 2026-07-02 A | 2026-07-08 A | HAL-C-A-S-837 | 100% | 2026-08-09 | 2026-08-12 | Structural Steel Fixer [80 h]; General Labour [80 h]; Equipment Operator [80 h]; Mobile Crane [40 h]; Construction Cost [164363] | 164,362.65 | 164,362.65 | 15 |  |  | 05 | 08 | 01 |
| HAL-C-A-A-220 |  | Installation of raft and purlins | 5d | 2026-07-02 A | 2026-07-09 A | HAL-C-A-A-210 | 100% | 2026-08-12 | 2026-08-18 | Structural Steel Fixer [160 h]; General Labour [160 h]; Mobile Crane [80 h]; Equipment Operator [160 h]; Construction Cost [340061] | 340,060.66 | 340,060.66 | 15 |  |  | 05 | 08 | 01 |
| HAL-C-A-A-1440 |  | Steel members for office area | 5d | 2026-07-20 A | 2026-07-23 A | HAL-C-A-A-1430, HAL-C-A-A-220 | 100% | 2026-08-13 | 2026-08-19 | Construction Cost [97318.2]; Structural Steel Fixer [112 h]; Mobile Crane [56 h]; General Labour [112 h]; Equipment Operator [112 h] | 97,318.17 | 97,318.17 |  | H1.C.A1.SA.FI.G.0730 | 1 | 05 | 08 | 01 |
| HAL-C-A-A-1430 |  | Intumescent paint to steel works | 5d | 2026-07-25 A | 2026-08-02 A | HAL-E-ST-A-1700, HAL-C-A-A-220 | 100% | 2026-08-10 | 2026-08-15 | Painter [112 h]; Construction Cost [269284] | 269,283.81 | 269,283.81 |  | H1.C.A1.SA.FI.G.0730 | 1 | 05 | 08 | 01 |
| HAL-C-A-A-250 |  | Installation of roof sheet | 5d | 2026-08-01 A | 2026-08-09 A | HAL-C-A-A-230, HAL-C-A-A-1430, HAL-C-A-S-6133, HAL-C-A-SS-1020 | 100% | 2026-08-31 | 2026-09-05 | Roof sheet worker [160 h]; General Labour [160 h]; Mobile Crane [80 h]; Equipment Operator [160 h]; Construction Cost [453414] | 453,414.21 | 453,414.21 | 15 |  |  | 05 | 08 | 01 |
| HAL-C-A-SS-1040 |  | Epoxy paint for external platform | 5d | 2026-08-03 A | 2026-08-06 A | HAL-C-A-SS-1030, HAL-C-A-SS-1030 FF | 100% | 2026-08-20 | 2026-08-25 | Painter [80 h]; Construction Cost [6812.27] | 6,812.27 | 6,812.27 |  | H1.C.A1.SA.FI.G.0730 | 1 | 05 | 08 | 01 |
| HAL-C-A-A-240 |  | Installation of wall sandwich panel | 5d | 2026-08-19 A | 2026-08-29 A | HAL-C-A-A-260 | 100% | 2026-09-07 | 2026-09-12 | Sandwich panel worker [112 h]; General Labour [112 h]; Mobile Crane [56 h]; Equipment Operator [112 h]; Construction Cost [170030] | 170,030.33 | 170,030.33 | 15 |  |  | 05 | 08 | 01 |
| HAL-C-A-SS-1020 |  | Epoxy paint to steel members at office area | 5d | 2026-09-13 A | 2026-09-14 A | HAL-C-A-A-1440 | 100% | 2026-09-15 | 2026-09-20 | Painter [112 h]; Construction Cost [24329.5] | 24,329.54 | 24,329.54 |  | H1.C.A1.SA.FI.G.0730 | 1 | 05 | 08 | 01 |
|  | 2 | **ARCHITECTURAL** |  | 2026-08-01 | 2026-10-28 |  |  |  |  |  |  |  |  |  |  |  |  |  |
|  | 1 | **MASONARY WORKS** |  | 2026-08-01 | 2026-08-15 |  |  |  |  |  |  |  |  |  |  |  |  |  |
| HAL-C-A-A-1030 |  | Block work at toilet area | 7d | 2026-08-01 A | 2026-08-15 A | HAL-C-A-A-260 | 100% | 2026-08-30 | 2026-09-06 | Mason [112 h]; Construction Cost [15836.3] | 15,836.32 | 15,836.32 |  |  | 1 | 05 | 02 | 01 |
| HAL-C-A-A-230 |  | Block work at factory area | 12d | 2026-08-01 A | 2026-08-15 A | HAL-C-A-S-837 | 100% | 2026-08-17 | 2026-08-30 | AAC panel erector [240 h]; General Labour [240 h]; Equipment Operator [240 h]; Mobile Crane [120 h]; Construction Cost [38856.6] | 38,856.62 | 38,856.62 |  |  |  | 05 | 02 | 01 |
| HAL-C-A-A-260 |  | Block work at office area | 8d | 2026-08-01 A | 2026-08-15 A | HAL-C-A-A-230 SS+3d | 100% | 2026-08-20 | 2026-08-29 | AAC panel erector [160 h]; General Labour [160 h]; Mobile Crane [80 h]; Equipment Operator [160 h]; Construction Cost [9714] | 9,714 | 9,714 |  |  |  | 05 | 02 | 01 |
|  | 5 | **WALL FINISHES** |  | 2026-09-08 | 2026-10-24 |  |  |  |  |  |  |  |  |  |  |  |  |  |
| HAL-C-A-A-1040 |  | Internal Wall Plaster | 15d | 2026-09-08 A | 2026-09-12 A | HAL-C-A-A-1030, HAL-C-A-E-643 SS, HAL-C-A-S-1017 | 100% | 2026-09-14 | 2026-10-01 | Mason [240 h]; Construction Cost [29610.2] | 29,610.16 | 29,610.16 |  | H1.C.A1.SA.FI.G.0710 | 1 | 05 | 02 | 01 |
| HAL-C-A-A-1090 |  | Paint to Plaster (Primer, Putty & First Coat) | 7d | 2026-09-15 A | 2026-10-24 A | HAL-C-A-A-1110 | 100% | 2026-10-01 | 2026-10-10 | Painter [112 h]; Construction Cost [26649.5] | 26,649.45 | 26,649.45 |  | H1.C.A1.SA.FI.G.0730 | 1 | 05 | 02 | 01 |
|  | 2 | **CIELING FINISHES** |  | 2026-09-17 | 2026-10-15 |  |  |  |  |  |  |  |  |  |  |  |  |  |
| HAL-C-A-A-1100 |  | Installation of Ceiling Gypsum Board | 5d | 2026-09-17 A | 2026-10-15 A | HAL-C-A-A-1080, HAL-C-A-S-1017 | 100% | 2026-10-12 | 2026-10-18 | Carperter [80 h]; Construction Cost [44650.2] | 44,650.24 | 44,650.24 |  | H1.C.A1.SA.FI.G.0820 | 1 | 05 | 02 | 01 |
|  | 6 | **FLOOR FINISHES** |  | 2026-09-16 | 2026-10-15 |  |  |  |  |  |  |  |  |  |  |  |  |  |
| HAL-C-A-A-1080 |  | Tiles for Toilet | 7d | 2026-09-16 A | 2026-09-19 A | HAL-C-A-A-1220, HAL-P-ST-EX-110 | 100% | 2026-10-04 | 2026-10-12 | Tile Fixer [112 h]; Construction Cost [48089.6] | 48,089.55 | 48,089.55 |  | H1.C.A1.SA.FI.G.0640 | 1 | 05 | 02 | 01 |
| HAL-C-A-A-1110 |  | Tiles for Office Area | 2d | 2026-09-24 A | 2026-09-26 A | HAL-C-A-A-1100 | 100% | 2026-10-05 | 2026-10-07 | Tile Fixer [32 h]; Construction Cost [25626.5] | 25,626.5 | 25,626.5 |  |  |  | 05 | 02 | 01 |
| HAL-C-A-A-1240 |  | Granite strip | 2d | 2026-09-24 A | 2026-10-03 A | HAL-C-A-A-1420, HAL-C-A-A-1110 | 100% | 2026-10-01 | 2026-10-04 | Tile Fixer [32 h]; Construction Cost [1454.24] | 1,454.24 | 1,454.24 |  | H1.C.A1.SA.FI.G.0640 | 1 | 05 | 02 | 01 |
| HAL-C-A-A-1260 |  | Epoxy paint | 7d | 2026-09-24 A | 2026-10-15 A | HAL-C-A-A-1240 | 100% | 2026-10-04 | 2026-10-12 | Painter [112 h]; Construction Cost [102516] | 102,515.85 | 102,515.85 |  |  |  | 05 | 02 | 01 |

| ID | WBS | Activity | Duration | Start | Finish | Predecessors | Complete | Planned start | Planned finish | Total float | Free float | Resources | Cost | Actual cost | Phasing Code Category | Discipline | Project component code | Ordinal Start | Ordinal Finish | 00 Activity ID | Ordinal Duration | Zone # |
| --- | --- | --- | --- | --- | --- | --- | --- | --- | --- | --- | --- | --- | --- | --- | --- | --- | --- | --- | --- | --- | --- | --- |
|  | 3 | **DOORS & WINDOWS** |  | 2026-08-13 | 2026-10-15 |  |  |  |  |  |  |  |  |  |  |  |  |  |  |  |  |  |
| HAL-C-A-A-1370 |  | Skylight fixtures installation | 1d | 2026-08-13 A | 2026-08-22 A | HAL-C-A-A-1360 | 100% | 2026-09-27 | 2026-09-27 |  |  | Carperter [16 h]; Construction Cost [61929.7] | 61,929.74 | 61,929.74 | 05 | 02 | 01 |  |  |  |  |  |
| HAL-C-A-A-1050 |  | Roll up Shutter Door | 1d | 2026-08-17 A | 2026-09-20 A | HAL-C-A-A-1420 | 100% | 2026-09-17 | 2026-09-17 |  |  | Carperter [16 h]; Construction Cost [66353.3] | 66,353.3 | 66,353.3 | 05 | 02 | 01 |  |  |  |  |  |
| HAL-C-A-A-1420 |  | Window (CW1) | 7d | 2026-09-08 A | 2026-09-24 A | HAL-C-A-A-240 | 100% | 2026-09-14 | 2026-09-21 |  |  | Carperter [112 h]; Construction Cost [90682.8] | 90,682.84 | 90,682.84 | 05 | 02 | 01 |  |  |  |  |  |
| HAL-C-A-A-1060 |  | Supply and install (D5) 1000*2200mm single leaf steel door with door | 1d | 2026-09-17 A | 2026-09-19 A | HAL-C-A-A-1050 | 100% | 2026-09-22 | 2026-09-24 |  |  | Carperter [16 h]; Construction Cost [15482.4] | 15,482.44 | 15,482.44 | 05 | 02 | 01 |  |  |  |  |  |
| HAL-C-A-A-1360 |  | Supply and install fire rated 45 min (D2) 1200*2200 mm single leaf steel door | 1d | 2026-09-17 A | 2026-09-19 A | HAL-C-A-A-1350 | 100% | 2026-09-28 | 2026-09-29 |  |  | Carperter [16 h]; Construction Cost [16146] | 16,145.97 | 16,145.97 | 05 | 02 | 01 |  |  |  |  |  |
| HAL-C-A-A-1120 |  | Supply and install (D4) 800*2200 mm single leaf aluminum door with door | 1d | 2026-09-24 A | 2026-10-15 A | HAL-C-A-A-1060 | 100% | 2026-09-28 | 2026-09-29 |  |  | Carperter [16 h]; Construction Cost [21896.6] | 21,896.59 | 21,896.59 | 05 | 02 | 01 |  |  |  |  |  |
| HAL-C-A-A-1130 |  | Supply and install (D7) 1000*2200 mm single leaf aluminum door with door | 1d | 2026-09-24 A | 2026-10-15 A | HAL-C-A-A-1120 | 100% | 2026-09-29 | 2026-09-30 |  |  | Carperter [16 h]; Construction Cost [7520.04] | 7,520.04 | 7,520.04 | 05 | 02 | 01 |  |  |  |  |  |
| HAL-C-A-A-1350 |  | Supply and install (D3) 1000*2200 mm single leaf aluminum door with door | 1d | 2026-09-24 A | 2026-10-15 A | HAL-C-A-A-1130 | 100% | 2026-09-30 | 2026-10-01 |  |  | Carperter [16 h]; Construction Cost [15482.4] | 15,482.44 | 15,482.44 | 05 | 02 | 01 |  |  |  |  |  |
|  | 4 | **WATER PROOFING WORKS** |  | 2026-09-14 | 2026-09-15 |  |  |  |  |  |  |  |  |  |  |  |  |  |  |  |  |  |
| HAL-C-A-A-1220 |  | Waterproofing membrane for toilets | 4d | 2026-09-14 A | 2026-09-15 A | HAL-C-A-M-820, HAL-C-A-A-1040, HAL-C-A-A-1370 | 100% | 2026-09-29 | 2026-10-04 |  |  | General Labour [64 h]; Construction Cost [4653.33] | 4,653.33 | 4,653.33 | 05 | 02 | 01 |  |  |  |  |  |
|  | 7 | **METAL WORKS** |  | 2026-08-18 | 2026-10-25 |  |  |  |  |  |  |  |  |  |  |  |  |  |  |  |  |  |
| HAL-C-A-A-1150 |  | Steel Ladder | 2d | 2026-08-18 A | 2026-08-29 A | HAL-C-A-A-1240 | 100% | 2026-10-31 | 2026-11-01 |  |  | Steel Fixer [32 h]; General Labour [32 h]; Construction Cost [9510.64] | 9,510.64 | 9,510.64 | 05 | 02 | 01 |  |  |  |  |  |
| HAL-C-A-A-1170 |  | Aluminium composite panel | 5d | 2026-09-14 A | 2026-10-03 A | HAL-C-A-A-1250 | 100% | 2026-10-21 | 2026-10-27 |  |  | Steel Fixer [80 h]; General Labour [80 h]; Construction Cost [175670] | 175,670.36 | 175,670.36 | 05 | 02 | 01 |  |  |  |  |  |
| HAL-C-A-A-1160 |  | Galvanised Steel Gratings | 2d | 2026-10-10 A | 2026-10-11 A | HAL-C-A-A-1170 SS | 100% | 2026-10-17 | 2026-10-19 |  |  | Steel Fixer [32 h]; General Labour [32 h]; Construction Cost [6237.21] | 6,237.21 | 6,237.21 | 05 | 02 | 01 |  |  |  |  |  |
| HAL-C-A-A-1250 |  | Steel railing works | 4d | 2026-10-24 A | 2026-10-25 A | HAL-C-A-A-1150 SS | 100% | 2026-10-26 | 2026-10-29 |  |  | Steel Fixer [64 h]; General Labour [64 h]; Construction Cost [7497.92] | 7,497.92 | 7,497.92 | 05 | 02 | 01 |  |  |  |  |  |
|  | 8 | **SPECIALTIES** |  | 2026-09-22 | 2026-10-28 |  |  |  |  |  |  |  |  |  |  |  |  |  |  |  |  |  |
| HAL-C-A-A-1180 |  | Installation of fittings | 4d | 2026-09-22 A | 2026-09-24 A | HAL-C-A-A-1160 SS | 100% | 2026-10-08 | 2026-10-13 |  |  | Plumber [112 h]; Construction Cost [21686.5] | 21,686.47 | 21,686.47 | 05 | 02 | 01 |  |  |  |  |  |
| HAL-C-A-A-1200 |  | Furniture Installation | 1d | 2026-10-20 A | 2026-10-20 A | HAL-C-A-A-1410 SS | 100% | 2026-10-26 | 2026-10-26 |  |  | General Labour [16 h]; Mason [16 h]; Construction Cost [10561.2] | 10,561.24 | 10,561.24 | 05 | 02 | 01 |  |  |  |  |  |
| HAL-C-A-A-1410 |  | Identification sign; ID01 & ID02 | 3d | 2026-10-26 | 2026-10-28 | HAL-C-A-A-1180 SS |  |  |  | 6d | 0d | Mason [48 h]; Construction Cost [9289.46] | 9,289.46 |  | 05 | 02 | 01 |  |  |  |  |  |
|  | 3 | **MECHANICAL** |  | 2026-07-11 | 2026-10-08 |  |  |  |  |  |  |  |  |  |  |  |  |  |  |  |  |  |
|  | 1 | **HVAC** |  | 2026-08-06 | 2026-10-04 |  |  |  |  |  |  |  |  |  |  |  |  |  |  |  |  |  |
|  | 1 | **FIRST STAGE** |  | 2026-08-06 | 2026-09-16 |  |  |  |  |  |  |  |  |  |  |  |  |  |  |  |  |  |
| HAL-C-A-M-760 |  | Installation of HVAC Ducts | 2d | 2026-08-06 A | 2026-09-16 A | HAL-C-A-M-780 | 100% | 2026-11-03 | 2026-11-05 |  |  | Ductman [32 h]; Construction Cost [141482] | 141,481.82 | 141,481.82 | 05 | 03 | 01 | 0 | 0 | H1.C.A1.0A.MH.G.1040 | 0 | 1 |
| HAL-C-A-M-790 |  | Installation of Duct insulation | 2d | 2026-08-06 A | 2026-09-16 A | HAL-C-A-M-760 | 100% | 2026-11-05 | 2026-11-08 |  |  | Ductman [32 h]; Construction Cost [18747.3] | 18,747.27 | 18,747.27 | 05 | 03 | 01 |  |  |  |  |  |

| ID | WBS | Activity | Duration | Start | Finish | Predecessors | Complete | Planned start | Planned finish | Resources | Cost | Actual cost | Phasing Code Category | Discipline | Project component code | Ordinal Start | Ordinal Finish | 00 Activity ID | Ordinal Duration | Zone # |
| --- | --- | --- | --- | --- | --- | --- | --- | --- | --- | --- | --- | --- | --- | --- | --- | --- | --- | --- | --- | --- |
|  | 2 | **SECOND STAGE** |  | 2026-09-10 | 2026-10-04 |  |  |  |  |  |  |  |  |  |  |  |  |  |  |  |
| HAL-C-A-M-780 |  | Installation of Wall Propeller Type Exhaust Fan | 4d | 2026-09-10 A | 2026-09-12 A | HAL-C-A-M-750 | 100% | 2026-11-04 | 2026-11-09 | AC Technician [64 h]; Construction Cost [17417.7] | 17,417.74 | 17,417.74 | 05 | 03 | 01 |  |  |  |  |  |
| HAL-C-A-M-750 |  | Installation of Exhaust Fans | 2d | 2026-09-16 A | 2026-09-17 A | HAL-C-A-A-1090 | 100% | 2026-10-28 | 2026-10-31 | AC Technician [32 h]; Construction Cost [9331.24] | 9,331.24 | 9,331.24 | 05 | 03 | 01 | 0 | 0 | H1.C.A1.0A.MH.X.4050 | 0 | 1 |
| HAL-C-A-M-770 |  | Installation of Diffuser | 2d | 2026-09-16 A | 2026-10-04 A | HAL-C-A-M-790 | 100% | 2026-10-31 | 2026-11-02 | Ductman [32 h]; Construction Cost [2764.72] | 2,764.72 | 2,764.72 | 05 | 03 | 01 | 0 | 0 | H1.C.A1.0A.MH.G.3010 | 0 | 1 |
| HAL-C-A-M-960 |  | Supply, install, test and commission door grilles & exhaust louvers | 2d | 2026-09-16 A | 2026-10-04 A | HAL-C-A-M-770 | 100% | 2026-11-02 | 2026-11-04 | Ductman [32 h]; Construction Cost [7188.28] | 7,188.28 | 7,188.28 | 05 | 03 | 01 | 0 | 0 | H1.C.A1.0A.MH.G.3010 | 0 | 1 |
|  | 2 | **FIRE FIGHTING SYSTEM** |  | 2026-08-06 | 2026-09-24 |  |  |  |  |  |  |  |  |  |  |  |  |  |  |  |
|  | 1 | **FIRST STAGE** |  | 2026-08-06 | 2026-09-17 |  |  |  |  |  |  |  |  |  |  |  |  |  |  |  |
| HAL-C-A-M-920 |  | Installation of Fire Fighting Pipes (Seamless Black Steel) | 7d | 2026-08-06 A | 2026-09-17 A | HAL-C-A-A-1090 | 100% | 2026-10-27 | 2026-11-04 | Pipe Fitter [112 h]; Construction Cost [60425.7] | 60,425.74 | 60,425.74 | 05 | 03 | 01 | 0 | 0 | H1.C.A1.0A.MF.G.1010 | 0 | 1 |
| HAL-C-A-M-930 |  | Installation of Fire Fighting Valve | 5d | 2026-08-06 A | 2026-09-05 A | HAL-C-A-M-920 | 100% | 2026-11-04 | 2026-11-10 | Pipe Fitter [80 h]; Construction Cost [12712.2] | 12,712.18 | 12,712.18 | 05 | 03 | 01 | 0 | 0 | H1.C.A1.0A.MF.G.2010 | 0 | 1 |
|  | 2 | **SECOND STAGE** |  | 2026-09-17 | 2026-09-24 |  |  |  |  |  |  |  |  |  |  |  |  |  |  |  |
| HAL-C-A-M-990 |  | Supply, install, test and commission Fire Department Connection(FDC) | 3d | 2026-09-17 A | 2026-09-19 A | HAL-C-A-M-960 SS | 100% | 2026-11-02 | 2026-11-05 | Pipe Fitter [48 h]; Construction Cost [2598.84] | 2,598.84 | 2,598.84 | 05 | 03 | 01 | 0 | 0 | H1.C.A1.0A.MF.G.3010 | 0 | 1 |
| HAL-C-A-M-940 |  | Installation of Fire Hose Cabinet | 3d | 2026-09-22 A | 2026-09-24 A | HAL-C-A-M-930 | 100% | 2026-10-05 | 2026-10-08 | Pipe Fitter [48 h]; Construction Cost [11147.4] | 11,147.36 | 11,147.36 | 05 | 03 | 01 | 0 | 0 | H1.C.A1.0A.MF.G.3010 | 0 | 1 |
|  | 3 | **SEWER AND DRAINAGE SYSTEM** |  | 2026-07-11 | 2026-10-08 |  |  |  |  |  |  |  |  |  |  |  |  |  |  |  |
|  | 1 | **FIRST STAGE** |  | 2026-07-11 | 2026-08-06 |  |  |  |  |  |  |  |  |  |  |  |  |  |  |  |
| HAL-C-A-M-1000 |  | Installation of Trench drain | 5d | 2026-07-11 A | 2026-08-06 A | HAL-C-A-M-840 | 100% | 2026-09-29 | 2026-10-04 | Plumber [80 h]; Construction Cost [11379.6] | 11,379.59 | 11,379.59 | 05 | 03 | 01 |  |  |  |  |  |
| HAL-C-A-M-820 |  | Installation of Sanitary Waste / Drainage Pipes | 4d | 2026-07-11 A | 2026-08-06 A | HAL-C-A-S-977 | 100% | 2026-07-19 | 2026-07-22 | Plumber [64 h]; Construction Cost [14362.4] | 14,362.41 | 14,362.41 | 05 | 03 | 01 | 0 | 0 | H1.C.K1.00.MP.G.1020 | 0 | 1 |
| HAL-C-A-M-840 |  | Installation of Floor Drain | 2d | 2026-07-11 A | 2026-08-06 A | HAL-C-A-M-820, HAL-C-A-A-1080 | 100% | 2026-09-27 | 2026-09-28 | Plumber [32 h]; Construction Cost [10616.5] | 10,616.53 | 10,616.53 | 05 | 03 | 01 |  |  |  |  | 1 |
|  | 2 | **SECOND STAGE** |  | 2026-07-11 | 2026-10-08 |  |  |  |  |  |  |  |  |  |  |  |  |  |  |  |
| HAL-C-A-M-860 |  | Installation of Roof Vent Cap | 2d | 2026-07-11 A | 2026-09-10 A | HAL-C-A-M-850 | 100% | 2026-10-19 | 2026-10-20 | Pipe Fitter [32 h]; Construction Cost [829.41] | 829.41 | 829.41 | 05 | 03 | 01 |  |  |  |  |  |
| HAL-C-A-M-800 |  | Installation of Electric Water Heater | 2d | 2026-09-05 A | 2026-09-10 A | HAL-C-A-M-1000 | 100% | 2026-11-01 | 2026-11-02 | Plumber [32 h]; Construction Cost [1592.48] | 1,592.48 | 1,592.48 | 05 | 03 | 01 | 0 | 0 | H1.C.K1.00.MP.G.1030 | 0 | 1 |
| HAL-C-A-M-810 |  | Installation of Sanitary Fixture and Accessories | 4d | 2026-10-04 A | 2026-10-08 A | HAL-C-A-M-800 | 100% | 2026-10-08 | 2026-10-13 | Plumber [64 h]; Construction Cost [16243] | 16,243.04 | 16,243.04 | 05 | 03 | 01 | 0 | 0 | H1.C.K1.00.MP.G.2040 | 0 | 1 |
| HAL-C-A-M-830 |  | Installation of Lavotary /Wash Basin | 2d | 2026-10-04 A | 2026-10-08 A | HAL-C-A-M-800, HAL-C-A-M-810 | 100% | 2026-10-13 | 2026-10-15 | Plumber [32 h]; Construction Cost [20348.3] | 20,348.35 | 20,348.35 | 05 | 03 | 01 |  |  |  |  | 1 |
| HAL-C-A-M-850 |  | Installation of Water Tap | 2d | 2026-10-04 A | 2026-10-08 A | HAL-C-A-M-830, HAL-C-A-M-890 | 100% | 2026-10-18 | 2026-10-20 | Plumber [32 h]; Construction Cost [2654.13] | 2,654.13 | 2,654.13 | 05 | 03 | 01 |  |  |  |  |  |
| HAL-C-A-M-890 |  | Installation of Bib Tap | 2d | 2026-10-04 A | 2026-10-08 A | HAL-C-A-M-810, HAL-C-A-M-830 | 100% | 2026-10-15 | 2026-10-18 | Plumber [32 h]; Construction Cost [2211.78] | 2,211.78 | 2,211.78 | 05 | 03 | 01 |  |  |  |  |  |

| ID | WBS | Activity | Duration | Start | Finish | Predecessors | Complete | Remaining | Planned start | Planned finish | Total float | Free float | Resources | Cost | Actual cost | Ordinal Start | Ordinal Finish | 00 Activity ID | Ordinal Duration | Zone # | Phasing Code Category | Discipline | Project component code |
| --- | --- | --- | --- | --- | --- | --- | --- | --- | --- | --- | --- | --- | --- | --- | --- | --- | --- | --- | --- | --- | --- | --- | --- |
|  | 4 | **WATER SUPPLY SYSTEM** |  | 2026-09-03 | 2026-09-12 |  |  |  |  |  |  |  |  |  |  |  |  |  |  |  |  |  |  |
|  | 1 | **FIRST STAGE** |  | 2026-09-03 | 2026-09-12 |  |  |  |  |  |  |  |  |  |  |  |  |  |  |  |  |  |  |
| HAL-C-A-M-910 |  | Installation of Water Supply Pipes | 4d | 2026-09-03 A | 2026-09-10 A | HAL-C-A-A-1090 | 100% |  | 2026-11-17 | 2026-11-21 |  |  | Plumber [64 h]; Construction Cost [19520.2] | 19,520.16 | 19,520.16 | 0 | 0 | H1.C.K1.00.MP.G.1010 | 0 | 1 | 05 | 03 | 01 |
| HAL-C-A-M-900 |  | Installation of Water Supply Valve | 2d | 2026-09-10 A | 2026-09-12 A | HAL-C-A-M-910 | 100% |  | 2026-11-04 | 2026-11-07 |  |  | Plumber [32 h]; Construction Cost [15736.8] | 15,736.79 | 15,736.79 | 0 | 0 | H1.C.K1.00.MP.G.2010 | 0 | 1 | 05 | 03 | 01 |
|  | 2 | **SECOND STAGE** |  | 2026-09-12 | 2026-09-12 |  |  |  |  |  |  |  |  |  |  |  |  |  |  |  |  |  |  |
| HAL-C-A-M-950 |  | Capped connection | 5d | 2026-09-12 A | 2026-09-12 A | HAL-C-A-M-900 | 100% |  | 2026-11-07 | 2026-11-12 |  |  | Plumber [80 h]; Construction Cost [287.53] | 287.53 | 287.53 |  |  |  |  |  | 05 | 03 | 01 |
|  | 4 | **ELECTRICAL** |  | 2026-06-17 | 2026-10-26 |  |  |  |  |  |  |  |  |  |  |  |  |  |  |  |  |  |  |
|  | 1 | **FIRST STAGE** |  | 2026-06-17 | 2026-10-25 |  |  |  |  |  |  |  |  |  |  |  |  |  |  |  |  |  |  |
| HAL-C-A-E-573 |  | Installation of Earthing and Grounding | 4d | 2026-06-17 A | 2026-10-25 A | HAL-C-A-E-683 SS | 100% |  | 2027-01-10 | 2027-01-14 |  |  | Electrician [64 h]; Construction Cost [17002.4] | 17,002.41 | 17,002.41 |  |  | H1.C.K1.00.EM.G.2040 |  | 1 | 05 | 04 | 01 |
| HAL-C-A-E-643 |  | Installation of Sleeves & Power outlet | 8d | 2026-06-17 A | 2026-09-15 A | HAL-C-A-A-1030 | 100% |  | 2026-10-13 | 2026-10-22 |  |  | Electrician [128 h]; Construction Cost [2853.19] | 2,853.19 | 2,853.19 |  |  |  |  | 1 | 05 | 04 | 01 |
| HAL-C-A-E-603 |  | Installation of Conduits and wiring outlets - Fire Alarm System | 4d | 2026-08-11 A | 2026-09-24 A | HAL-C-A-E-663 SS | 100% |  | 2026-11-07 | 2026-11-11 |  |  | Electrician [64 h]; Construction Cost [2026.84] | 2,026.84 | 2,026.84 |  |  | H1.C.K1.00.EL.G.1020 |  | 1 | 05 | 04 | 01 |
| HAL-C-A-E-623 |  | Installation of Conduites for Lighting Fixture | 4d | 2026-08-11 A | 2026-09-24 A | HAL-C-A-E-603 | 100% |  | 2026-11-11 | 2026-11-16 |  |  | Electrician [64 h]; Construction Cost [3983.66] | 3,983.66 | 3,983.66 |  |  | H1.C.K1.00.EM.G.2030 |  | 1 | 05 | 04 | 01 |
| HAL-C-A-E-693 |  | Installation of Wires | 4d | 2026-08-22 A | 2026-09-24 A | HAL-C-A-E-623 | 100% |  | 2026-11-16 | 2026-11-21 |  |  | Electrician [64 h]; Construction Cost [7966.69] | 7,966.69 | 7,966.69 |  |  |  |  |  | 05 | 04 | 01 |
| HAL-C-A-E-683 |  | Installation of LV Cables | 2d | 2026-09-22 A | 2026-10-17 A | HAL-C-A-E-673 SS | 100% |  | 2026-10-19 | 2026-10-21 |  |  | Electrician [64 h]; Construction Cost [31551] | 31,550.99 | 31,550.99 |  |  |  |  |  | 05 | 04 | 01 |
|  | 2 | **SECOND STAGE** |  | 2026-08-22 | 2026-10-26 |  |  |  |  |  |  |  |  |  |  |  |  |  |  |  |  |  |  |
| HAL-C-A-E-1030 |  | Installation of CCTV System | 2d | 2026-08-22 A | 2026-10-17 A | HAL-C-A-E-643, HAL-C-A-E-713 SS | 100% |  | 2026-11-23 | 2026-11-25 |  |  | Plumber [112 h]; Construction Cost [66177.6] | 66,177.58 | 66,177.58 |  |  |  |  |  | 05 | 04 | 01 |
| HAL-C-A-E-1040 |  | Installation of Solar power plant | 2d | 2026-08-22 A | 2026-10-12 A | HAL-C-C-E-1350 | 100% |  | 2026-09-06 | 2026-09-08 |  |  | Plumber [112 h]; Construction Cost [218966] | 218,965.89 | 218,965.89 |  |  |  |  |  | 05 | 04 | 01 |
| HAL-C-A-E-733 |  | Installation of Access Control System | 2d | 2026-08-22 A | 2026-10-26 | HAL-C-A-E-593 SS, HAL-C-A-M-990 SS | 80% | 0.4d | 2026-11-18 | 2026-11-21 | 6.8d | 0d | Electrician [80 h]; Construction Cost [24315.4] | 24,315.41 | 19,452.33 |  |  | H1.C.K1.00.EM.G.2040 |  | 1 | 05 | 04 | 01 |
| HAL-C-A-E-703 |  | Installation of LP-1 Panel | 2d | 2026-09-10 A | 2026-10-01 A | HAL-C-A-E-653 SS | 100% |  | 2026-11-12 | 2026-11-14 |  |  | Electrician [32 h]; Construction Cost [15128.5] | 15,128.55 | 15,128.55 |  |  | H1.C.K1.00.EM.G.2020 |  | 1 | 05 | 04 | 01 |
| HAL-C-A-E-613 |  | Installation of Lighting fixtures | 2d | 2026-09-22 A | 2026-10-25 A | HAL-C-A-E-693 SS | 100% |  | 2026-10-07 | 2026-10-10 |  |  | Electrician [64 h]; Construction Cost [59751.1] | 59,751.14 | 59,751.14 |  |  | H1.C.K1.00.EM.G.3010 |  | 1 | 05 | 04 | 01 |
| HAL-C-A-E-763 |  | Firewarning flash light with sounder; wall mounted, Weather proof | 2d | 2026-09-22 A | 2026-09-24 A | HAL-C-A-E-753 SS | 100% |  | 2026-10-05 | 2026-10-07 |  |  | Electrician [32 h]; Construction Cost [2963.79] | 2,963.79 | 2,963.79 |  |  | H1.C.K1.00.EM.G.2040 |  | 1 | 05 | 04 | 01 |
| HAL-C-A-E-583 |  | Installation of Fire Alarm Control Panel | 4d | 2026-09-24 A | 2026-10-17 A | HAL-C-A-E-603 SS | 100% |  | 2026-10-05 | 2026-10-10 |  |  | Electrician [64 h]; Construction Cost [16216.6] | 16,216.62 | 16,216.62 |  |  | H1.C.K1.00.EL.X.4120 |  | 1 | 05 | 04 | 01 |
| HAL-C-A-E-633 |  | Installation of Wiring Devices | 4d | 2026-09-24 A | 2026-10-17 A | HAL-C-A-E-643, HAL-C-A-A-1090 | 100% |  | 2026-10-13 | 2026-10-18 |  |  | Electrician [64 h]; Construction Cost [20742.2] | 20,742.16 | 20,742.16 |  |  | H1.C.K1.00.EM.G.3020 |  | 1 | 05 | 04 | 01 |
| HAL-C-A-E-663 |  | Installation of Disconnect Switches | 2d | 2026-09-24 A | 2026-10-17 A | HAL-C-A-E-633 | 100% |  | 2026-10-18 | 2026-10-20 |  |  | Electrician [32 h]; Construction Cost [25808.4] | 25,808.36 | 25,808.36 |  |  |  |  |  | 05 | 04 | 01 |
| HAL-C-A-E-743 |  | Monitor Modules for Fire Alarm | 2d | 2026-09-24 A | 2026-10-26 | HAL-C-A-E-733 SS | 70% | 0.6d | 2026-10-05 | 2026-10-07 | 7d | 0d | Electrician [32 h]; Construction Cost [3760.02] | 3,760.02 | 2,632.01 |  |  | H1.C.K1.00.EM.G.2040 |  | 1 | 05 | 04 | 01 |
| HAL-C-A-E-753 |  | Line Isolator Modules for Fire Alarm | 2d | 2026-09-24 A | 2026-10-17 A | HAL-C-A-E-743 SS | 100% |  | 2026-10-05 | 2026-10-07 |  |  | Electrician [32 h]; Construction Cost [163.42] | 163.42 | 163.42 |  |  | H1.C.K1.00.EM.G.2040 |  | 1 | 05 | 04 | 01 |
| HAL-C-A-E-593 |  | Installation of Fire Detectors & Accessories | 4d | 2026-10-01 A | 2026-10-17 A | HAL-C-A-E-583 SS, HAL-C-A-M-950 SS | 100% |  | 2026-10-12 | 2026-10-17 |  |  | Electrician [64 h]; Construction Cost [31219.2] | 31,219.23 | 31,219.23 |  |  | H1.C.K1.00.EL.G.3020 |  | 1 | 05 | 04 | 01 |
| HAL-C-A-E-673 |  | Installation of Telephone Cabinet | 2d | 2026-10-01 A | 2026-10-12 A | HAL-C-A-E-713 SS | 100% |  | 2026-10-12 | 2026-10-14 |  |  | Electrician [32 h]; Construction Cost [23299.8] | 23,299.84 | 23,299.84 |  |  |  |  | 1 | 05 | 04 | 01 |
| HAL-C-A-E-653 |  | Installation of Main Distribution Board | 2d | 2026-10-07 A | 2026-10-17 A | HAL-C-A-E-693 SS | 100% |  | 2026-10-11 | 2026-10-13 |  |  | Electrician [32 h]; Construction Cost [25479.7] | 25,479.66 | 25,479.66 |  |  | H1.C.K1.00.EM.G.2020 |  | 1 | 05 | 04 | 01 |
| HAL-C-A-E-713 |  | Installation of PP-AC panel | 2d | 2026-10-07 A | 2026-10-17 A | HAL-C-A-E-703 SS | 100% |  | 2026-10-11 | 2026-10-13 |  |  | Electrician [32 h]; Construction Cost [18214] | 18,213.99 | 18,213.99 |  |  | H1.C.K1.00.EM.G.2020 |  | 1 | 05 | 04 | 01 |

| ID | WBS | Activity | Duration | Start | Finish | Predecessors | Complete | Planned start | Planned finish | Resources | Cost | Actual cost | 00 Activity ID | AMH Tender Act. ID | Tender Original Duration | Zone # | Phasing Code Category | Discipline | Project component code |
| --- | --- | --- | --- | --- | --- | --- | --- | --- | --- | --- | --- | --- | --- | --- | --- | --- | --- | --- | --- |
|  | 6 | **BLOCK D** |  | 2026-01-17 | 2026-10-28 |  |  |  |  |  |  |  |  |  |  |  |  |  |  |
|  | 1 | **STRUCTURAL** |  | 2026-01-17 | 2026-07-08 |  |  |  |  |  |  |  |  |  |  |  |  |  |  |
|  | 1 | **FOOTING** |  | 2026-01-17 | 2026-02-19 |  |  |  |  |  |  |  |  |  |  |  |  |  |  |
| HAL-C-D-S-210 |  | Excavation for footings | 7d | 2026-01-17 A | 2026-02-04 A | HAL-C-A-S-210, HAL-PMS-MMS-0070 | 100% | 2026-02-12 | 2026-02-21 | General Labour [112 h]; Equipment Operator [112 h]; Truck [56 h]; Excavator [56 h]; Mini Roller Compactor [56 h]; Construction Cost [166241] | 166,240.82 | 166,240.82 | H1.C.K1.00.SW.F.1010 | PH1-MHR-ST-640 | 12 | 1 | 05 | 01 | 04 |
| HAL-C-D-S-1037 |  | Anti Termite Below Footings | 1d | 2026-02-10 A | 2026-02-10 A | HAL-C-D-S-210 | 100% | 2026-03-03 | 2026-03-04 | Mason [16 h]; Construction Cost [8441.61] | 8,441.61 | 8,441.61 | H1.C.K1.00.SW.F.1030 | PH1-MHR-ST-1020 | 10 | 1 | 05 | 01 | 04 |
| HAL-C-D-S-797 |  | Lean Concrete Below Footings | 2d | 2026-02-10 A | 2026-02-10 A | HAL-C-D-S-947 | 100% | 2026-03-05 | 2026-03-08 | Mason [32 h]; Construction Cost [8238.87] | 8,238.87 | 8,238.87 | H1.C.K1.00.SW.F.1030 | PH1-MHR-ST-1020 | 10 | 1 | 05 | 01 | 04 |
| HAL-C-D-S-947 |  | Vapour Barrier for Footings | 1d | 2026-02-10 A | 2026-02-10 A | HAL-C-D-S-1037 | 100% | 2026-03-04 | 2026-03-05 | General Labour [16 h]; Construction Cost [6030.16] | 6,030.16 | 6,030.16 | H1.C.K1.00.SW.F.1040 | PH1-MHR-ST-1080 | 15 | 1 | 05 | 01 | 04 |
| HAL-C-D-S-857 |  | Formwork for Footings | 6d | 2026-02-11 A | 2026-02-14 A | HAL-C-D-S-847 | 100% | 2026-03-12 | 2026-03-21 | Carperter [64 h]; Construction Cost [23267.9] | 23,267.89 | 23,267.89 |  |  |  | 1 | 05 | 01 | 04 |
| HAL-C-D-S-847 |  | Rebar for Footings | 4d | 2026-02-12 A | 2026-02-18 A | HAL-C-D-S-797 | 100% | 2026-03-08 | 2026-03-12 | Steel Fixer [64 h]; Construction Cost [93071.6] | 93,071.56 | 93,071.56 |  |  |  | 1 | 05 | 01 | 04 |
| HAL-C-D-S-807 |  | Pouring Concrete for Footings | 1d | 2026-02-19 A | 2026-02-19 A | HAL-C-D-S-857 | 100% | 2026-03-14 | 2026-03-15 | Carperter [16 h]; Mason [16 h]; Steel Fixer [16 h]; Concrete Mixer [8 h]; Equipment Operator [16 h]; Construction Cost [116339] | 116,339.45 | 116,339.45 | H1.C.K1.00.RC.F.1010 | PH1-MHR-ST-1030 | 21 | 1 | 05 | 01 | 04 |
|  | 2 | **COLUMN NECK** |  | 2026-02-12 | 2026-03-25 |  |  |  |  |  |  |  |  |  |  |  |  |  |  |
| HAL-C-D-S-897 |  | Rebar for column neck | 2d | 2026-02-12 A | 2026-02-18 A | HAL-C-D-S-807 | 100% | 2026-03-22 | 2026-03-24 | Steel Fixer [32 h]; Construction Cost [21993.7] | 21,993.66 | 21,993.66 |  |  |  | 1 | 05 | 01 | 04 |
| HAL-C-D-S-907 |  | Formwork for column neck | 2d | 2026-02-21 A | 2026-03-02 A | HAL-C-D-S-897 | 100% | 2026-03-12 | 2026-03-15 | Carperter [32 h]; Construction Cost [5498.72] | 5,498.72 | 5,498.72 |  |  |  | 1 | 05 | 01 | 04 |
| HAL-C-D-S-887 |  | Pouring Concrete for column neck | 1d | 2026-02-25 A | 2026-03-02 A | HAL-C-D-S-907 | 100% | 2026-03-15 | 2026-03-16 | Mason [16 h]; Carperter [16 h]; Concrete Mixer [8 h]; Steel Fixer [16 h]; Equipment Operator [16 h]; Construction Cost [27492.4] | 27,492.39 | 27,492.39 | H1.C.K1.00.RC.F.1110 | PH1-MHR-ST-1030 | 21 | 1 | 05 | 01 | 04 |
| HAL-C-D-S-937 |  | Damp proof /Bitumin paint on Footings & column neck | 2d | 2026-02-28 A | 2026-03-03 A | HAL-C-D-S-887 | 100% | 2026-03-21 | 2026-03-23 | Painter [32 h]; Construction Cost [6903.81] | 6,903.81 | 6,903.81 | H1.C.K1.00.SW.F.1050 | PH1-MHR-ST-1080 | 15 | 1 | 05 | 01 | 04 |
| HAL-C-D-S-997 |  | Backfilling / Compaction up to Bottom of Grade Beams | 12d | 2026-03-04 A | 2026-03-25 A | HAL-C-D-S-937 | 100% | 2026-03-17 | 2026-04-01 | General Labour [256 h]; Truck [128 h]; Mini Roller Compactor [128 h]; Equipment Operator [256 h]; Wheel Loader [128 h]; Construction Cost [32707.9] | 32,707.87 | 32,707.87 | H1.C.K1.00.SW.F.1060 | PH1-MHR-ST-645 | 15 | 1 | 05 | 01 | 04 |
|  | 3 | **GRADE BEAM** |  | 2026-03-28 | 2026-04-22 |  |  |  |  |  |  |  |  |  |  |  |  |  |  |
| HAL-C-D-S-1047 |  | Anti Termite Below Grade Beams | 1d | 2026-03-28 A | 2026-03-28 A | HAL-C-D-S-997 | 100% | 2026-04-18 | 2026-04-19 | Mason [16 h]; Construction Cost [8441.61] | 8,441.61 | 8,441.61 | H1.C.K1.00.SW.F.1030 | PH1-MHR-ST-1020 | 10 | 1 | 05 | 01 | 04 |
| HAL-C-D-S-817 |  | Lean Concrete Below Grade Beams | 2d | 2026-03-28 A | 2026-03-28 A | HAL-C-D-S-967 | 100% | 2026-04-21 | 2026-04-23 | Mason [32 h]; Construction Cost [8238.87] | 8,238.87 | 8,238.87 | H1.C.K1.00.SW.F.1130 | PH1-MHR-ST-1020 | 10 | 1 | 05 | 01 | 04 |
| HAL-C-D-S-967 |  | Vapour barrier for Grade Beams | 2d | 2026-03-28 A | 2026-03-28 A | HAL-C-D-S-1047 | 100% | 2026-04-19 | 2026-04-21 | General Labour [32 h]; Construction Cost [4019.9] | 4,019.9 | 4,019.9 | H1.C.K1.00.SW.F.1040 | PH1-MHR-ST-1080 | 15 | 1 | 05 | 01 | 04 |
| HAL-C-D-S-867 |  | Rebar for Grade Beams | 5d | 2026-04-02 A | 2026-04-16 A | HAL-C-D-S-817, HAL-PMS-MMS-0060 | 100% | 2026-04-22 | 2026-04-28 | Steel Fixer [80 h]; Construction Cost [24993.1] | 24,993.07 | 24,993.07 |  |  |  | 1 | 05 | 01 | 04 |
| HAL-C-D-S-877 |  | Formwork for Grade Beams | 2d | 2026-04-02 A | 2026-04-16 A | HAL-C-D-S-867 | 100% | 2026-04-28 | 2026-04-30 | Carperter [32 h]; Construction Cost [6248.27] | 6,248.27 | 6,248.27 |  |  |  | 1 | 05 | 01 | 04 |
| HAL-C-D-S-1027 |  | Anchor bolts installation | 2d | 2026-04-12 A | 2026-04-16 A | HAL-C-D-S-877 SS | 100% | 2026-04-30 | 2026-05-03 | Carperter [32 h]; Construction Cost [5667.68] | 5,667.68 | 5,667.68 |  |  |  | 1 | 05 | 01 | 04 |
| HAL-C-D-S-827 |  | Pouring Concrete for Grade Beams | 1d | 2026-04-18 A | 2026-04-18 A | HAL-C-D-S-877, HAL-C-D-S-1027 | 100% | 2026-05-05 | 2026-05-06 | Mason [16 h]; Carperter [16 h]; Concrete Mixer [8 h]; Steel Fixer [16 h]; Equipment Operator [16 h]; Construction Cost [31241.3] | 31,241.35 | 31,241.35 | H1.C.K1.00.RC.F.1110 | PH1-MHR-ST-1030 | 21 | 1 | 05 | 01 | 04 |
| HAL-C-D-S-977 |  | Damp proof /Bitumin paint on Grade Beams | 5d | 2026-04-20 A | 2026-04-22 A | HAL-C-D-S-827 | 100% | 2026-05-12 | 2026-05-18 | Painter [80 h]; Construction Cost [6903.81] | 6,903.81 | 6,903.81 | H1.C.K1.00.SW.F.1050 | PH1-MHR-ST-1080 | 15 | 1 | 05 | 01 | 04 |

| ID | WBS | Activity | Duration | Start | Finish | Predecessors | Complete | Planned start | Planned finish | Resources | Cost | Actual cost | Zone # | Phasing Code Category | Discipline | Project component code | 00 Activity ID | AMH Tender Act. ID | Tender Original Duration | project summary-6 | PS (su & rbf)-6 | New code for weekly report-6 | New discipline code-6 | Remarks |
| --- | --- | --- | --- | --- | --- | --- | --- | --- | --- | --- | --- | --- | --- | --- | --- | --- | --- | --- | --- | --- | --- | --- | --- | --- |
|  | 5 | **SLAB ON GRADE** |  | 2026-04-27 | 2026-06-20 |  |  |  |  |  |  |  |  |  |  |  |  |  |  |  |  |  |  |  |
| HAL-C-D-S-1007 |  | Backfilling / Compaction for Slab on Grade | 12d | 2026-04-27 A | 2026-04-30 A | HAL-C-D-S-977 | 100% | 2026-05-19 | 2026-06-06 | Mini Roller Compactor [128 h]; General Labour [256 h]; Equipment Operator [256 h]; Wheel Loader [128 h]; Truck [128 h]; Construction Cost [32707.9] | 32,707.87 | 32,707.87 | 1 | 05 | 01 | 04 |  |  |  |  |  |  |  |  |
| HAL-C-D-S-957 |  | Anti Termite Treatment below Ground Slab | 1d | 2026-05-18 A | 2026-05-25 A | HAL-C-D-S-1007 | 100% | 2026-06-11 | 2026-06-11 | General Labour [16 h]; Construction Cost [11255.5] | 11,255.49 | 11,255.49 | 1 | 05 | 01 | 04 | H1.C.A1.06.SW.F.1220 | PH1-MHR-ST-645 | 15 |  |  |  |  |  |
| HAL-C-D-S-987 |  | Vapour barrier for below Ground Slab | 2d | 2026-05-18 A | 2026-05-25 A | HAL-C-D-S-957 | 100% | 2026-06-13 | 2026-06-14 | General Labour [32 h]; Construction Cost [10050.1] | 10,050.07 | 10,050.07 | 1 | 05 | 01 | 04 |  |  |  |  |  |  |  |  |
| HAL-C-D-S-837 |  | Pouring Concrete for Ground Slab | 4d | 2026-05-19 A | 2026-05-25 A | HAL-C-D-S-987 | 100% | 2026-06-15 | 2026-06-18 | Mason [64 h]; Carperter [64 h]; Steel Fixer [64 h]; Concrete Mixer [32 h]; Equipment Operator [64 h]; Construction Cost [304092] | 304,091.64 | 304,091.64 | 1 | 05 | 01 | 04 | H1.C.A1.06.RC.G.1210 | PH1-MHR-ST-496 | 24 |  |  |  |  |  |
| HAL-C-D-S-1017 |  | Concrete pad | 7d | 2026-06-17 A | 2026-06-20 A | HAL-C-D-A-260 | 100% | 2026-09-30 | 2026-10-08 | Mason [112 h]; Construction Cost [1803.82] | 1,803.82 | 1,803.82 |  | 05 | 01 | 04 |  |  |  |  |  |  |  |  |
|  | 4 | **COLUMNS & BEAMS** |  | 2026-03-02 | 2026-07-08 |  |  |  |  |  |  |  |  |  |  |  |  |  |  |  |  |  |  |  |
| HAL-C-D-S-6101 |  | Rebar for Tie Beams | 4d | 2026-03-02 A | 2026-03-04 A | HAL-C-D-S-5103 | 100% | 2026-06-18 | 2026-06-23 | Steel Fixer [64 h]; Construction Cost [7796.52] | 7,796.52 | 7,796.52 | 1 | 05 | 01 | 04 |  |  |  | 3 | 1 | 4 | 1 |  |
| HAL-C-D-S-6102 |  | Formwork for Tie Beams | 2d | 2026-03-02 A | 2026-03-04 A | HAL-C-D-S-6101 | 100% | 2026-06-23 | 2026-06-25 | Carperter [32 h]; Construction Cost [1949.44] | 1,949.44 | 1,949.44 | 1 | 05 | 01 | 04 |  |  |  | 3 | 1 | 4 | 1 |  |
| HAL-C-D-S-6103 |  | Pouring Concrete for Tie Beams | 1d | 2026-03-07 A | 2026-03-07 A | HAL-C-D-S-6102 | 100% | 2026-06-25 | 2026-06-27 | Mason [16 h]; Carperter [16 h]; Concrete Mixer [8 h]; Steel Fixer [16 h]; Equipment Operator [16 h]; Construction Cost [9745.95] | 9,745.95 | 9,745.95 | 1 | 05 | 01 | 04 | H1.C.K1.00.RC.F.1110 | PH1-MHR-ST-1030 | 21 | 3 | 1 | 4 | 1 |  |
| HAL-C-D-S-5101 |  | Rebar for column | 7d | 2026-05-02 A | 2026-05-16 A | HAL-C-D-S-1007 | 100% | 2026-05-19 | 2026-05-31 | Steel Fixer [112 h]; Construction Cost [18494.8] | 18,494.75 | 18,494.75 | 1 | 05 | 01 | 04 |  |  |  | 3 | 1 | 4 | 1 |  |
| HAL-C-D-S-6113 |  | Rebar for Beams | 4d | 2026-05-07 A | 2026-07-06 A | HAL-C-D-S-6103 | 100% | 2026-06-09 | 2026-06-14 | Steel Fixer [64 h]; Construction Cost [11954.6] | 11,954.65 | 11,954.65 | 1 | 05 | 01 | 04 |  |  |  | 3 | 1 | 4 | 1 | 1 |
| HAL-C-D-S-5102 |  | Formwork for column | 4d | 2026-05-09 A | 2026-05-17 A | HAL-C-D-S-5101 | 100% | 2026-06-03 | 2026-06-08 | Carperter [64 h]; Construction Cost [4623.84] | 4,623.84 | 4,623.84 | 1 | 05 | 01 | 04 |  |  |  | 3 | 1 | 4 | 1 |  |
| HAL-C-D-S-5103 |  | Pouring Concrete for column | 1d | 2026-05-16 A | 2026-05-20 A | HAL-C-D-S-5102 | 100% | 2026-06-13 | 2026-06-14 | Mason [16 h]; Carperter [16 h]; Concrete Mixer [8 h]; Steel Fixer [16 h]; Equipment Operator [16 h]; Construction Cost [23118.6] | 23,118.59 | 23,118.59 | 1 | 05 | 01 | 04 | H1.C.K1.00.RC.F.1110 | PH1-MHR-ST-1030 | 21 | 3 | 1 | 4 | 1 |  |
| HAL-C-D-S-6123 |  | Formwork for Beams | 2d | 2026-06-20 A | 2026-07-07 A | HAL-C-D-S-6113, HAL-C-D-S-6113 FF | 100% | 2026-06-30 | 2026-07-02 | Carperter [32 h]; Construction Cost [2988.97] | 2,988.97 | 2,988.97 | 1 | 05 | 01 | 04 |  |  |  | 3 | 1 | 4 | 1 |  |
| HAL-C-D-S-6133 |  | Pouring Concrete for Beams | 1d | 2026-07-08 A | 2026-07-08 A | HAL-C-D-S-6123, HAL-C-D-S-6123 FF | 100% | 2026-07-18 | 2026-07-19 | Mason [16 h]; Carperter [16 h]; Concrete Mixer [8 h]; Steel Fixer [16 h]; Equipment Operator [16 h]; Construction Cost [14943.6] | 14,943.63 | 14,943.63 | 1 | 05 | 01 | 04 | H1.C.K1.00.RC.F.1110 | PH1-MHR-ST-1030 | 21 | 3 | 1 | 4 | 1 |  |
|  | 5 | **STRUCTURAL STEEL** |  | 2026-05-04 | 2026-08-12 |  |  |  |  |  |  |  |  |  |  |  |  |  |  |  |  |  |  |  |
| HAL-C-D-A-1440 |  | Steel members for office area | 5d | 2026-05-04 A | 2026-05-25 A | HAL-C-D-A-1430, HAL-C-D-A-220 | 100% | 2026-08-25 | 2026-08-31 | Construction Cost [97318.2]; Equipment Operator [112 h]; General Labour [112 h]; Mobile Crane [56 h]; Structural Steel Fixer [112 h] | 97,318.17 | 97,318.17 | 1 | 05 | 08 | 04 | H1.C.A1.SA.FI.G.0730 |  |  |  |  |  |  |  |
| HAL-C-D-SS-1030 |  | Steel members for external platform | 5d | 2026-05-04 A | 2026-05-25 A | HAL-C-D-A-1440 | 100% | 2026-09-10 | 2026-09-16 | Construction Cost [27249.1]; General Labour [112 h]; Mobile Crane [56 h]; Structural Steel Fixer [112 h]; Equipment Operator [112 h] | 27,249.09 | 27,249.09 | 1 | 05 | 08 | 04 | H1.C.A1.SA.FI.G.0730 |  |  |  |  |  |  |  |
| HAL-C-D-A-210 |  | Installation of columns | 3d | 2026-05-06 A | 2026-05-13 A | HAL-C-D-S-837, HAL-C-A-A-220 | 100% | 2026-08-05 | 2026-08-09 | Structural Steel Fixer [80 h]; General Labour [80 h]; Equipment Operator [80 h]; Mobile Crane [40 h]; Construction Cost [164363] | 164,362.65 | 164,362.65 |  | 05 | 08 | 04 |  |  |  |  |  |  |  | 15 |
| HAL-C-D-A-220 |  | Installation of raft and purlins | 5d | 2026-05-06 A | 2026-05-13 A | HAL-C-D-A-210 | 100% | 2026-08-09 | 2026-08-15 | Structural Steel Fixer [160 h]; General Labour [160 h]; Mobile Crane [80 h]; Equipment Operator [160 h]; Construction Cost [340061] | 340,060.66 | 340,060.66 |  | 05 | 08 | 04 |  |  |  |  |  |  |  | 15 |
| HAL-C-D-A-1430 |  | Intumescent paint to steel works | 5d | 2026-06-02 A | 2026-06-22 A | HAL-C-D-A-220 | 100% | 2026-08-20 | 2026-08-26 | Painter [112 h]; Construction Cost [269284] | 269,283.81 | 269,283.81 | 1 | 05 | 08 | 04 | H1.C.A1.SA.FI.G.0730 |  |  |  |  |  |  | 1 |
| HAL-C-D-A-250 |  | Installation of roof sheet | 5d | 2026-06-14 A | 2026-06-18 A | HAL-C-D-A-230, HAL-C-D-A-1430, HAL-C-D-S-6133, HAL-C-D-SS-1040, HAL-C-D-SS-1020 | 100% | 2026-09-28 | 2026-10-04 | Roof sheet worker [160 h]; General Labour [160 h]; Mobile Crane [80 h]; Equipment Operator [160 h]; Construction Cost [453414] | 453,414.21 | 453,414.21 |  | 05 | 08 | 04 |  |  |  |  |  |  |  | 15 |
| HAL-C-D-A-240 |  | Installation of wall sandwich panel | 5d | 2026-07-08 A | 2026-07-30 A | HAL-C-D-A-260 | 100% | 2026-08-13 | 2026-08-18 | Sandwich panel worker [112 h]; General Labour [112 h]; Mobile Crane [56 h]; Equipment Operator [112 h]; Construction Cost [170030] | 170,030.33 | 170,030.33 |  | 05 | 08 | 04 |  |  |  |  |  |  |  | 15 |
| HAL-C-D-SS-1040 |  | Epoxy paint for external platform | 5d | 2026-07-19 A | 2026-07-20 A | HAL-C-D-SS-1030, HAL-C-D-SS-1030 FF | 100% | 2026-08-10 | 2026-08-15 | Painter [80 h]; Construction Cost [6812.27] | 6,812.27 | 6,812.27 | 1 | 05 | 08 | 04 | H1.C.A1.SA.FI.G.0730 |  |  |  |  |  |  |  |
| HAL-C-D-SS-1020 |  | Epoxy paint to steel members at office area | 5d | 2026-08-11 A | 2026-08-12 A | HAL-C-D-A-1440 | 100% | 2026-08-31 | 2026-09-05 | Painter [112 h]; Construction Cost [24329.5] | 24,329.54 | 24,329.54 | 1 | 05 | 08 | 04 | H1.C.A1.SA.FI.G.0730 |  |  |  |  |  |  |  |

| ID | WBS | Activity | Duration | Start | Finish | Predecessors | Complete | Planned start | Planned finish | Resources | Cost | Actual cost | Remarks | Zone # | Phasing Code Category | Discipline | Project component code | 00 Activity ID |
| --- | --- | --- | --- | --- | --- | --- | --- | --- | --- | --- | --- | --- | --- | --- | --- | --- | --- | --- |
|  | 2 | **ARCHITECTURAL** |  | 2026-06-06 | 2026-10-28 |  |  |  |  |  |  |  |  |  |  |  |  |  |
|  | 1 | **MASONARY WORKS** |  | 2026-06-06 | 2026-06-24 |  |  |  |  |  |  |  |  |  |  |  |  |  |
| HAL-C-D-A-1030 |  | Block work at toilet area | 7d | 2026-06-06 A | 2026-06-24 A | HAL-C-D-A-260 | 100% | 2026-10-10 | 2026-10-18 | Mason [112 h]; Construction Cost [15836.3] | 15,836.32 | 15,836.32 | 1 | 1 | 05 | 02 | 04 |  |
| HAL-C-D-A-230 |  | Block work at factory area | 15d | 2026-06-06 A | 2026-06-24 A | HAL-C-D-S-837, HAL-C-D-A-220, HAL-C-A-A-230 | 100% | 2026-09-07 | 2026-09-26 | AAC panel erector [240 h]; General Labour [240 h]; Equipment Operator [240 h]; Mobile Crane [120 h]; Construction Cost [38856.6] | 38,856.62 | 38,856.62 | 1 |  | 05 | 02 | 04 |  |
| HAL-C-D-A-260 |  | Block work at office area | 10d | 2026-06-06 A | 2026-06-24 A | HAL-C-D-A-250 SS, HAL-C-D-A-1440 | 100% | 2026-09-28 | 2026-10-10 | AAC panel erector [160 h]; General Labour [160 h]; Mobile Crane [80 h]; Equipment Operator [160 h]; Construction Cost [9714] | 9,714 | 9,714 | 1 |  | 05 | 02 | 04 |  |
|  | 5 | **WALL FINISHES** |  | 2026-07-14 | 2026-10-21 |  |  |  |  |  |  |  |  |  |  |  |  |  |
| HAL-C-D-A-1040 |  | Internal Wall Plaster | 15d | 2026-07-14 A | 2026-07-23 A | HAL-C-D-A-1030, HAL-C-D-E-643, HAL-C-D-S-1017, HAL-PMS-DMS-2310 | 100% | 2026-08-31 | 2026-09-17 | Mason [240 h]; Construction Cost [29610.2] | 29,610.16 | 29,610.16 |  | 1 | 05 | 02 | 04 | H1.C.A1.SA.FI.G.0710 |
| HAL-C-D-A-1090 |  | Paint to Plaster (Primer, Putty & First Coat) | 7d | 2026-07-27 A | 2026-10-21 A | HAL-C-D-A-1110 | 100% | 2026-09-27 | 2026-10-04 | Painter [112 h]; Construction Cost [26649.5] | 26,649.45 | 26,649.45 |  | 1 | 05 | 02 | 04 | H1.C.A1.SA.FI.G.0730 |
|  | 2 | **CIELING FINISHES** |  | 2026-09-05 | 2026-09-24 |  |  |  |  |  |  |  |  |  |  |  |  |  |
| HAL-C-D-A-1100 |  | Installation of Ceiling Gypsum Board | 5d | 2026-09-05 A | 2026-09-24 A | HAL-C-D-A-1080, HAL-C-D-S-1017 | 100% | 2026-09-22 | 2026-09-29 | Carperter [80 h]; Construction Cost [44650.2] | 44,650.24 | 44,650.24 |  | 1 | 05 | 02 | 04 | H1.C.A1.SA.FI.G.0820 |
|  | 6 | **FLOOR FINISHES** |  | 2026-07-29 | 2026-10-15 |  |  |  |  |  |  |  |  |  |  |  |  |  |
| HAL-C-D-A-1080 |  | Tiles for Toilet | 7d | 2026-07-29 A | 2026-08-02 A | HAL-C-D-A-1220 | 100% | 2026-09-14 | 2026-09-22 | Tile Fixer [112 h]; Construction Cost [48089.6] | 48,089.55 | 48,089.55 |  | 1 | 05 | 02 | 04 | H1.C.A1.SA.FI.G.0640 |
| HAL-C-D-A-1110 |  | Tiles for Office Area | 2d | 2026-08-19 A | 2026-08-29 A | HAL-C-D-A-1100 | 100% | 2026-10-05 | 2026-10-07 | Tile Fixer [32 h]; Construction Cost [25626.5] | 25,626.5 | 25,626.5 |  |  | 05 | 02 | 04 |  |
| HAL-C-D-A-1240 |  | Granite strip | 2d | 2026-08-30 A | 2026-08-31 A | HAL-C-D-A-1420, HAL-C-D-A-1110 | 100% | 2026-10-12 | 2026-10-14 | Tile Fixer [32 h]; Construction Cost [1454.24] | 1,454.24 | 1,454.24 |  | 1 | 05 | 02 | 04 | H1.C.A1.SA.FI.G.0640 |
| HAL-C-D-A-1260 |  | Epoxy paint | 2d | 2026-09-03 A | 2026-10-15 A | HAL-C-D-A-1200 SS | 100% | 2026-10-04 | 2026-10-06 | Painter [112 h]; Construction Cost [102516] | 102,515.85 | 102,515.85 |  |  | 05 | 02 | 04 |  |
|  | 3 | **DOORS & WINDOWS** |  | 2026-07-12 | 2026-09-12 |  |  |  |  |  |  |  |  |  |  |  |  |  |
| HAL-C-D-A-1420 |  | Window (CW1) | 7d | 2026-07-12 A | 2026-09-12 A | HAL-C-D-A-240 | 100% | 2026-08-20 | 2026-08-29 | Carperter [112 h]; Construction Cost [90682.8] | 90,682.84 | 90,682.84 |  |  | 05 | 02 | 04 |  |
| HAL-C-D-A-1370 |  | Skylight fixtures installation | 1d | 2026-07-25 A | 2026-07-27 A | HAL-C-D-A-1360 | 100% | 2026-08-30 | 2026-08-31 | Carperter [16 h]; Construction Cost [61929.7] | 61,929.74 | 61,929.74 |  |  | 05 | 02 | 04 |  |
| HAL-C-D-A-1050 |  | Roll up Shutter Door | 1d | 2026-08-02 A | 2026-08-06 A | HAL-C-D-A-1420 | 100% | 2026-08-30 | 2026-08-30 | Carperter [16 h]; Construction Cost [66353.3] | 66,353.3 | 66,353.3 |  |  | 05 | 02 | 04 |  |
| HAL-C-D-A-1060 |  | Supply and install (D5) 1000*2200mm single leaf steel door with door | 1d | 2026-08-11 A | 2026-09-10 A | HAL-C-D-A-1050 | 100% | 2026-09-08 | 2026-09-09 | Carperter [16 h]; Construction Cost [15482.4] | 15,482.44 | 15,482.44 |  |  | 05 | 02 | 04 |  |
| HAL-C-D-A-1360 |  | Supply and install fire rated 45 min (D2) 1200*2200 mm single leaf steel door | 1d | 2026-08-11 A | 2026-09-10 A | HAL-C-D-A-1350 | 100% | 2026-09-13 | 2026-09-14 | Carperter [16 h]; Construction Cost [16146] | 16,145.97 | 16,145.97 |  |  | 05 | 02 | 04 |  |
| HAL-C-D-A-1120 |  | Supply and install (D4) 800*2200 mm single leaf aluminum door with door | 1d | 2026-09-03 A | 2026-09-06 A | HAL-C-D-A-1060 | 100% | 2026-09-08 | 2026-09-09 | Carperter [16 h]; Construction Cost [21896.6] | 21,896.59 | 21,896.59 |  |  | 05 | 02 | 04 |  |
| HAL-C-D-A-1130 |  | Supply and install (D7) 1000*2200 mm single leaf aluminum door with door | 1d | 2026-09-03 A | 2026-09-06 A | HAL-C-D-A-1120 | 100% | 2026-09-09 | 2026-09-10 | Carperter [16 h]; Construction Cost [7520.04] | 7,520.04 | 7,520.04 |  |  | 05 | 02 | 04 |  |
| HAL-C-D-A-1350 |  | Supply and install (D3) 1000*2200 mm single leaf aluminum door with door | 1d | 2026-09-03 A | 2026-09-06 A | HAL-C-D-A-1130 | 100% | 2026-09-10 | 2026-09-12 | Carperter [16 h]; Construction Cost [15482.4] | 15,482.44 | 15,482.44 |  |  | 05 | 02 | 04 |  |

| ID | WBS | Activity | Duration | Start | Finish | Predecessors | Complete | Planned start | Planned finish | Total float | Free float | Resources | Cost | Actual cost | Phasing Code Category | Discipline | Project component code | Ordinal Start | Ordinal Finish | 00 Activity ID | Ordinal Duration | Zone # |
| --- | --- | --- | --- | --- | --- | --- | --- | --- | --- | --- | --- | --- | --- | --- | --- | --- | --- | --- | --- | --- | --- | --- |
|  | 4 | **WATER PROOFING WORKS** |  | 2026-07-25 | 2026-07-25 |  |  |  |  |  |  |  |  |  |  |  |  |  |  |  |  |  |
| HAL-C-D-A-1220 |  | Waterproofing membrane for toilets | 4d | 2026-07-25 A | 2026-07-25 A | HAL-C-D-M-820, HAL-C-D-A-1040, HAL-C-D-A-1370 | 100% | 2026-09-10 | 2026-09-15 |  |  | General Labour [64 h]; Construction Cost [4653.33] | 4,653.33 | 4,653.33 | 05 | 02 | 04 |  |  |  |  |  |
|  | 7 | **METAL WORKS** |  | 2026-08-02 | 2026-10-23 |  |  |  |  |  |  |  |  |  |  |  |  |  |  |  |  |  |
| HAL-C-D-A-1170 |  | Aluminium composite panel | 5d | 2026-08-02 A | 2026-10-03 A | HAL-C-D-A-1250 | 100% | 2026-10-01 | 2026-10-07 |  |  | Steel Fixer [80 h]; General Labour [80 h]; Construction Cost [175670] | 175,670.36 | 175,670.36 | 05 | 02 | 04 |  |  |  |  |  |
| HAL-C-D-A-1150 |  | Steel Ladder | 2d | 2026-08-18 A | 2026-08-29 A | HAL-C-D-A-1240 | 100% | 2026-10-08 | 2026-10-11 |  |  | Steel Fixer [32 h]; General Labour [32 h]; Construction Cost [9510.64] | 9,510.64 | 9,510.64 | 05 | 02 | 04 |  |  |  |  |  |
| HAL-C-D-A-1160 |  | Galvanised Steel Gratings | 2d | 2026-10-07 A | 2026-10-08 A | HAL-C-D-A-1170 | 100% | 2026-10-17 | 2026-10-18 |  |  | Steel Fixer [32 h]; General Labour [32 h]; Construction Cost [6237.21] | 6,237.21 | 6,237.21 | 05 | 02 | 04 |  |  |  |  |  |
| HAL-C-D-A-1250 |  | Steel railing works | 4d | 2026-10-22 A | 2026-10-23 A | HAL-C-D-A-1150 | 100% | 2026-10-26 | 2026-10-29 |  |  | Steel Fixer [64 h]; General Labour [64 h]; Construction Cost [7497.92] | 7,497.92 | 7,497.92 | 05 | 02 | 04 |  |  |  |  |  |
|  | 8 | **SPECIALTIES** |  | 2026-09-22 | 2026-10-28 |  |  |  |  |  |  |  |  |  |  |  |  |  |  |  |  |  |
| HAL-C-D-A-1180 |  | Installation of fittings | 4d | 2026-09-22 A | 2026-09-24 A | HAL-C-D-A-1160 | 100% | 2026-10-24 | 2026-10-28 |  |  | Plumber [112 h]; Construction Cost [21686.5] | 21,686.47 | 21,686.47 | 05 | 02 | 04 |  |  |  |  |  |
| HAL-C-D-A-1200 |  | Furniture Installation | 1d | 2026-10-24 A | 2026-10-24 A | HAL-C-D-A-1410 SS | 100% | 2026-10-26 | 2026-10-26 |  |  | General Labour [16 h]; Mason [16 h]; Construction Cost [10561.2] | 10,561.24 | 10,561.24 | 05 | 02 | 04 |  |  |  |  |  |
| HAL-C-D-A-1410 |  | Identification sign; ID01 & ID02 | 3d | 2026-10-26 | 2026-10-28 | HAL-C-D-A-1180 SS |  |  |  | 6d | 0d | Mason [48 h]; Construction Cost [9289.46] | 9,289.46 |  | 05 | 02 | 04 |  |  |  |  |  |
|  | 3 | **MECHANICAL** |  | 2026-04-16 | 2026-09-24 |  |  |  |  |  |  |  |  |  |  |  |  |  |  |  |  |  |
|  | 1 | **HVAC** |  | 2026-06-24 | 2026-09-22 |  |  |  |  |  |  |  |  |  |  |  |  |  |  |  |  |  |
|  | 1 | **FIRST STAGE** |  | 2026-06-24 | 2026-07-30 |  |  |  |  |  |  |  |  |  |  |  |  |  |  |  |  |  |
| HAL-C-D-M-760 |  | Installation of HVAC Ducts | 2d | 2026-06-24 A | 2026-07-30 A | HAL-C-D-M-780 | 100% | 2026-10-19 | 2026-10-21 |  |  | Ductman [32 h]; Construction Cost [141482] | 141,481.82 | 141,481.82 | 05 | 03 | 04 | 0 | 0 | H1.C.A1.0A.MH.G.1040 | 0 | 1 |
| HAL-C-D-M-790 |  | Installation of Duct insulation | 2d | 2026-06-24 A | 2026-07-30 A | HAL-C-D-M-760 | 100% | 2026-10-21 | 2026-10-24 |  |  | Ductman [32 h]; Construction Cost [18747.3] | 18,747.27 | 18,747.27 | 05 | 03 | 04 |  |  |  |  |  |
|  | 2 | **SECOND STAGE** |  | 2026-07-28 | 2026-09-22 |  |  |  |  |  |  |  |  |  |  |  |  |  |  |  |  |  |
| HAL-C-D-M-750 |  | Installation of Exhaust Fans | 2d | 2026-07-28 A | 2026-07-28 A | HAL-C-D-A-1090 | 100% | 2026-09-26 | 2026-09-28 |  |  | AC Technician [32 h]; Construction Cost [9331.24] | 9,331.24 | 9,331.24 | 05 | 03 | 04 | 0 | 0 | H1.C.A1.0A.MH.X.4050 | 0 | 1 |
| HAL-C-D-M-780 |  | Installation of Wall Propeller Type Exhaust Fan | 4d | 2026-09-02 A | 2026-09-05 A | HAL-C-D-M-750 | 100% | 2026-09-28 | 2026-10-03 |  |  | AC Technician [64 h]; Construction Cost [17417.7] | 17,417.74 | 17,417.74 | 05 | 03 | 04 |  |  |  |  |  |
| HAL-C-D-M-960 |  | Supply, install, test and commission door grilles & exhaust louvers | 2d | 2026-09-05 A | 2026-09-10 A | HAL-C-D-M-770 | 100% | 2026-10-05 | 2026-10-07 |  |  | Ductman [32 h]; Construction Cost [7188.28] | 7,188.28 | 7,188.28 | 05 | 03 | 04 | 0 | 0 | H1.C.A1.0A.MH.G.3010 | 0 | 1 |
| HAL-C-D-M-770 |  | Installation of Diffuser | 2d | 2026-09-19 A | 2026-09-22 A | HAL-C-D-M-790 | 100% | 2026-10-12 | 2026-10-14 |  |  | Ductman [32 h]; Construction Cost [2764.72] | 2,764.72 | 2,764.72 | 05 | 03 | 04 | 0 | 0 | H1.C.A1.0A.MH.G.3010 | 0 | 1 |
|  | 2 | **FIRE FIGHTING SYSTEM** |  | 2026-06-17 | 2026-08-22 |  |  |  |  |  |  |  |  |  |  |  |  |  |  |  |  |  |
|  | 1 | **FIRST STAGE** |  | 2026-06-17 | 2026-08-05 |  |  |  |  |  |  |  |  |  |  |  |  |  |  |  |  |  |
| HAL-C-D-M-920 |  | Installation of Fire Fighting Pipes (Seamless Black Steel) | 7d | 2026-06-17 A | 2026-08-05 A | HAL-C-D-A-1090 | 100% | 2026-11-25 | 2026-12-03 |  |  | Pipe Fitter [112 h]; Construction Cost [60425.7] | 60,425.74 | 60,425.74 | 05 | 03 | 04 | 0 | 0 | H1.C.A1.0A.MF.G.1010 | 0 | 1 |
| HAL-C-D-M-930 |  | Installation of Fire Fighting Valve | 5d | 2026-06-17 A | 2026-08-05 A | HAL-C-D-M-920 | 100% | 2026-12-03 | 2026-12-09 |  |  | Pipe Fitter [80 h]; Construction Cost [12712.2] | 12,712.18 | 12,712.18 | 05 | 03 | 04 | 0 | 0 | H1.C.A1.0A.MF.G.2010 | 0 | 1 |

| ID | WBS | Activity | Duration | Start | Finish | Predecessors | Complete | Planned start | Planned finish | Resources | Cost | Actual cost | Ordinal Start | Ordinal Finish | 00 Activity ID | Ordinal Duration | Zone # | Phasing Code Category | Discipline | Project component code | Remarks |
| --- | --- | --- | --- | --- | --- | --- | --- | --- | --- | --- | --- | --- | --- | --- | --- | --- | --- | --- | --- | --- | --- |
|  | 2 | **SECOND STAGE** |  | 2026-06-17 | 2026-08-22 |  |  |  |  |  |  |  |  |  |  |  |  |  |  |  |  |
| HAL-C-D-M-940 |  | Installation of Fire Hose Cabinet | 3d | 2026-06-17 A | 2026-08-22 A | HAL-C-D-M-930 | 100% | 2026-12-09 | 2026-12-13 | Pipe Fitter [48 h]; Construction Cost [11147.4] | 11,147.36 | 11,147.36 | 0 | 0 | H1.C.A1.0A.MF.G.3010 | 0 | 1 | 05 | 03 | 04 |  |
| HAL-C-D-M-990 |  | Supply, install, test and commission Fire Department Connection(FDC) | 3d | 2026-07-25 A | 2026-08-05 A | HAL-C-D-M-960 SS | 100% | 2026-10-13 | 2026-10-17 | Pipe Fitter [48 h]; Construction Cost [2598.84] | 2,598.84 | 2,598.84 | 0 | 0 | H1.C.A1.0A.MF.G.3010 | 0 | 1 | 05 | 03 | 04 |  |
|  | 3 | **SEWER AND DRAINAGE SYSTEM** |  | 2026-04-16 | 2026-09-24 |  |  |  |  |  |  |  |  |  |  |  |  |  |  |  |  |
|  | 1 | **FIRST STAGE** |  | 2026-04-16 | 2026-08-05 |  |  |  |  |  |  |  |  |  |  |  |  |  |  |  |  |
| HAL-C-D-M-820 |  | Installation of Sanitary Waste / Drainage Pipes | 4d | 2026-04-16 A | 2026-04-30 A | HAL-C-D-S-977 | 100% | 2026-05-11 | 2026-05-16 | Plumber [64 h]; Construction Cost [14362.4] | 14,362.41 | 14,362.41 | 0 | 0 | H1.C.K1.00.MP.G.1020 | 0 | 1 | 05 | 03 | 04 |  |
| HAL-C-D-M-1000 |  | Installation of Trench drain | 5d | 2026-06-17 A | 2026-08-05 A | HAL-C-D-M-840 | 100% | 2026-11-11 | 2026-11-17 | Plumber [80 h]; Construction Cost [11379.6] | 11,379.59 | 11,379.59 |  |  |  |  |  | 05 | 03 | 04 |  |
| HAL-C-D-M-840 |  | Installation of Floor Drain | 2d | 2026-06-17 A | 2026-08-05 A | HAL-C-D-M-820, HAL-C-D-A-1080 | 100% | 2026-11-09 | 2026-11-11 | Plumber [32 h]; Construction Cost [10616.5] | 10,616.53 | 10,616.53 |  |  |  |  | 1 | 05 | 03 | 04 |  |
|  | 2 | **SECOND STAGE** |  | 2026-07-11 | 2026-09-24 |  |  |  |  |  |  |  |  |  |  |  |  |  |  |  |  |
| HAL-C-D-M-860 |  | Installation of Roof Vent Cap | 2d | 2026-07-11 A | 2026-08-25 A | HAL-C-D-M-850 | 100% | 2026-10-11 | 2026-10-13 | Pipe Fitter [32 h]; Construction Cost [829.41] | 829.41 | 829.41 |  |  |  |  |  | 05 | 03 | 04 |  |
| HAL-C-D-M-800 |  | Installation of Electric Water Heater | 2d | 2026-08-05 A | 2026-08-05 A | HAL-C-D-M-1000 | 100% | 2026-09-15 | 2026-09-17 | Plumber [32 h]; Construction Cost [1592.48] | 1,592.48 | 1,592.48 | 0 | 0 | H1.C.K1.00.MP.G.1030 | 0 | 1 | 05 | 03 | 04 |  |
| HAL-C-D-M-850 |  | Installation of Water Tap | 2d | 2026-09-17 A | 2026-09-19 A | HAL-C-D-M-830, HAL-C-D-M-890 | 100% | 2026-10-13 | 2026-10-15 | Plumber [32 h]; Construction Cost [2654.13] | 2,654.13 | 2,654.13 |  |  |  |  |  | 05 | 03 | 04 |  |
| HAL-C-D-M-810 |  | Installation of Sanitary Fixture and Accessories | 4d | 2026-09-19 A | 2026-09-24 A | HAL-C-D-M-800 | 100% | 2026-10-04 | 2026-10-08 | Plumber [64 h]; Construction Cost [16243] | 16,243.04 | 16,243.04 | 0 | 0 | H1.C.K1.00.MP.G.2040 | 0 | 1 | 05 | 03 | 04 |  |
| HAL-C-D-M-830 |  | Installation of Lavotary /Wash Basin | 2d | 2026-09-19 A | 2026-09-24 A | HAL-C-D-M-800, HAL-C-D-M-810 | 100% | 2026-10-08 | 2026-10-11 | Plumber [32 h]; Construction Cost [20348.3] | 20,348.35 | 20,348.35 |  |  |  |  | 1 | 05 | 03 | 04 |  |
| HAL-C-D-M-890 |  | Installation of Bib Tap | 2d | 2026-09-19 A | 2026-09-24 A | HAL-C-D-M-810, HAL-C-D-M-830 | 100% | 2026-10-11 | 2026-10-13 | Plumber [32 h]; Construction Cost [2211.78] | 2,211.78 | 2,211.78 |  |  |  |  |  | 05 | 03 | 04 |  |
|  | 4 | **WATER SUPPLY SYSTEM** |  | 2026-07-01 | 2026-08-05 |  |  |  |  |  |  |  |  |  |  |  |  |  |  |  |  |
|  | 1 | **FIRST STAGE** |  | 2026-07-01 | 2026-08-05 |  |  |  |  |  |  |  |  |  |  |  |  |  |  |  |  |
| HAL-C-D-M-910 |  | Installation of Water Supply Pipes | 4d | 2026-07-01 A | 2026-08-05 A | HAL-C-D-A-1090 | 100% | 2026-10-10 | 2026-10-13 | Plumber [64 h]; Construction Cost [19520.2] | 19,520.16 | 19,520.16 | 0 | 0 | H1.C.K1.00.MP.G.1010 | 0 | 1 | 05 | 03 | 04 |  |
| HAL-C-D-M-900 |  | Installation of Water Supply Valve | 2d | 2026-08-02 A | 2026-08-05 A | HAL-C-D-M-910 | 100% | 2026-09-28 | 2026-09-30 | Plumber [32 h]; Construction Cost [15736.8] | 15,736.79 | 15,736.79 | 0 | 0 | H1.C.K1.00.MP.G.2010 | 0 | 1 | 05 | 03 | 04 |  |
|  | 2 | **SECOND STAGE** |  | 2026-07-04 | 2026-08-05 |  |  |  |  |  |  |  |  |  |  |  |  |  |  |  |  |
| HAL-C-D-M-950 |  | Capped connection | 5d | 2026-07-04 A | 2026-08-05 A | HAL-C-D-M-900 | 100% | 2026-10-17 | 2026-10-21 | Plumber [80 h]; Construction Cost [287.53] | 287.53 | 287.53 |  |  |  |  |  | 05 | 03 | 04 |  |
|  | 4 | **ELECTRICAL** |  | 2026-04-16 | 2026-10-26 |  |  |  |  |  |  |  |  |  |  |  |  |  |  |  |  |
|  | 1 | **FIRST STAGE** |  | 2026-04-16 | 2026-10-25 |  |  |  |  |  |  |  |  |  |  |  |  |  |  |  |  |
| HAL-C-D-E-573 |  | Installation of Earthing and Grounding | 4d | 2026-04-16 A | 2026-10-25 A | HAL-C-D-E-683 SS | 100% | 2026-11-17 | 2026-11-22 | Electrician [64 h]; Construction Cost [17002.4] | 17,002.41 | 17,002.41 |  |  | H1.C.K1.00.EM.G.2040 |  | 1 | 05 | 04 | 04 | 1 |
| HAL-C-D-E-643 |  | Installation of Sleeves & Power outlet | 8d | 2026-04-16 A | 2026-08-01 A | HAL-C-D-A-1030 | 100% | 2026-09-10 | 2026-09-20 | Electrician [128 h]; Construction Cost [2853.19] | 2,853.19 | 2,853.19 |  |  |  |  | 1 | 05 | 04 | 04 | 1 |
| HAL-C-D-E-603 |  | Installation of Conduits and wiring outlets - Fire Alarm System | 4d | 2026-06-08 A | 2026-06-13 A | HAL-C-D-E-663 SS | 100% | 2026-12-16 | 2026-12-21 | Electrician [64 h]; Construction Cost [2026.84] | 2,026.84 | 2,026.84 |  |  | H1.C.K1.00.EL.G.1020 |  | 1 | 05 | 04 | 04 |  |
| HAL-C-D-E-623 |  | Installation of Conduites for Lighting Fixture | 4d | 2026-06-08 A | 2026-06-13 A | HAL-C-D-E-603 SS | 100% | 2026-12-16 | 2026-12-21 | Electrician [64 h]; Construction Cost [3983.66] | 3,983.66 | 3,983.66 |  |  | H1.C.K1.00.EM.G.2030 |  | 1 | 05 | 04 | 04 |  |
| HAL-C-D-E-693 |  | Installation of Wires | 2d | 2026-06-25 A | 2026-09-12 A | HAL-C-D-E-623 SS | 100% | 2026-10-17 | 2026-10-19 | Electrician [64 h]; Construction Cost [7966.69] | 7,966.69 | 7,966.69 |  |  |  |  |  | 05 | 04 | 04 |  |
| HAL-C-D-E-683 |  | Installation of LV Cables | 4d | 2026-09-05 A | 2026-10-13 A | HAL-C-D-E-693 | 100% | 2026-10-03 | 2026-10-07 | Electrician [64 h]; Construction Cost [31551] | 31,550.99 | 31,550.99 |  |  |  |  |  | 05 | 04 | 04 |  |

| ID | WBS | Activity | Duration | Start | Finish | Predecessors | Complete | Remaining | Planned start | Planned finish | Total float | Free float | Resources | Cost | Actual cost | Phasing Code Category | Discipline | Project component code | 00 Activity ID | Zone # | AMH Tender Act. ID | Tender Original Duration |
| --- | --- | --- | --- | --- | --- | --- | --- | --- | --- | --- | --- | --- | --- | --- | --- | --- | --- | --- | --- | --- | --- | --- |
|  | 2 | **SECOND STAGE** |  | 2026-06-17 | 2026-10-26 |  |  |  |  |  |  |  |  |  |  |  |  |  |  |  |  |  |
| HAL-C-D-E-1030 |  | Installation of CCTV System | 2d | 2026-06-17 A | 2026-10-12 A | HAL-C-D-E-643, HAL-C-D-E-713 SS | 100% |  | 2026-12-02 | 2026-12-05 |  |  | Plumber [112 h]; Construction Cost [66177.6] | 66,177.58 | 66,177.58 | 05 | 04 | 04 |  |  |  |  |
| HAL-C-D-E-733 |  | Installation of Access Control System | 2d | 2026-06-17 A | 2026-10-26 | HAL-C-D-E-593 | 80% | 0.4d | 2026-12-05 | 2026-12-07 | 6.8d | 0d | Electrician [80 h]; Construction Cost [24315.4] | 24,315.41 | 19,452.33 | 05 | 04 | 04 | H1.C.K1.00.EM.G.2040 | 1 |  |  |
| HAL-C-D-E-703 |  | Installation of LP-1 Panel | 2d | 2026-07-23 A | 2026-09-24 A | HAL-C-D-E-653 | 100% |  | 2026-10-11 | 2026-10-13 |  |  | Electrician [32 h]; Construction Cost [15128.5] | 15,128.55 | 15,128.55 | 05 | 04 | 04 | H1.C.K1.00.EM.G.2020 | 1 |  |  |
| HAL-C-D-E-673 |  | Installation of Telephone Cabinet | 2d | 2026-07-29 A | 2026-10-01 A | HAL-C-D-E-713 SS | 100% |  | 2026-10-12 | 2026-10-13 |  |  | Electrician [32 h]; Construction Cost [23299.8] | 23,299.84 | 23,299.84 | 05 | 04 | 04 |  | 1 |  |  |
| HAL-C-D-E-1040 |  | Installation of Solar power plant | 2d | 2026-08-15 A | 2026-10-12 A | HAL-C-D-E-733 SS | 100% |  | 2026-10-12 | 2026-10-14 |  |  | Plumber [112 h]; Construction Cost [218966] | 218,965.89 | 218,965.89 | 05 | 04 | 04 |  |  |  |  |
| HAL-C-D-E-633 |  | Installation of Wiring Devices | 4d | 2026-08-29 A | 2026-10-01 A | HAL-C-D-E-643, HAL-C-D-A-1090 | 100% |  | 2026-10-15 | 2026-10-20 |  |  | Electrician [64 h]; Construction Cost [20742.2] | 20,742.16 | 20,742.16 | 05 | 04 | 04 | H1.C.K1.00.EM.G.3020 | 1 |  |  |
| HAL-C-D-E-663 |  | Installation of Disconnect Switches | 2d | 2026-08-29 A | 2026-10-12 A | HAL-C-D-E-633 | 100% |  | 2026-10-20 | 2026-10-22 |  |  | Electrician [32 h]; Construction Cost [25808.4] | 25,808.36 | 25,808.36 | 05 | 04 | 04 |  |  |  |  |
| HAL-C-D-E-713 |  | Installation of PP-AC panel | 2d | 2026-09-02 A | 2026-10-12 A | HAL-C-D-E-703 SS | 100% |  | 2026-10-01 | 2026-10-03 |  |  | Electrician [32 h]; Construction Cost [18214] | 18,213.99 | 18,213.99 | 05 | 04 | 04 | H1.C.K1.00.EM.G.2020 | 1 |  |  |
| HAL-C-D-E-653 |  | Installation of Main Distribution Board | 2d | 2026-09-03 A | 2026-10-12 A | HAL-C-D-E-693 SS | 100% |  | 2026-10-03 | 2026-10-04 |  |  | Electrician [32 h]; Construction Cost [25479.7] | 25,479.66 | 25,479.66 | 05 | 04 | 04 | H1.C.K1.00.EM.G.2020 | 1 |  |  |
| HAL-C-D-E-613 |  | Installation of Lighting fixtures | 4d | 2026-09-08 A | 2026-10-12 A | HAL-C-D-E-693 SS | 100% |  | 2026-10-10 | 2026-10-13 |  |  | Electrician [64 h]; Construction Cost [59751.1] | 59,751.14 | 59,751.14 | 05 | 04 | 04 | H1.C.K1.00.EM.G.3010 | 1 |  |  |
| HAL-C-D-E-583 |  | Installation of Fire Alarm Control Panel | 4d | 2026-09-22 A | 2026-09-24 A | HAL-C-D-E-603 | 100% |  | 2026-10-17 | 2026-10-21 |  |  | Electrician [64 h]; Construction Cost [16216.6] | 16,216.62 | 16,216.62 | 05 | 04 | 04 | H1.C.K1.00.EL.X.4120 | 1 |  |  |
| HAL-C-D-E-593 |  | Installation of Fire Detectors & Accessories | 4d | 2026-09-22 A | 2026-10-12 A | HAL-C-D-E-583 SS | 100% |  | 2026-10-20 | 2026-10-24 |  |  | Electrician [64 h]; Construction Cost [31219.2] | 31,219.23 | 31,219.23 | 05 | 04 | 04 | H1.C.K1.00.EL.G.3020 | 1 |  |  |
| HAL-C-D-E-763 |  | Firewarning flash light with sounder; wall mounted, Weather proof | 2d | 2026-09-22 A | 2026-09-24 A | HAL-C-D-E-753 SS | 100% |  | 2026-10-18 | 2026-10-20 |  |  | Electrician [32 h]; Construction Cost [2963.79] | 2,963.79 | 2,963.79 | 05 | 04 | 04 | H1.C.K1.00.EM.G.2040 | 1 |  |  |
| HAL-C-D-E-743 |  | Monitor Modules for Fire Alarm | 2d | 2026-09-24 A | 2026-10-26 | HAL-C-D-E-733 SS | 70% | 0.6d | 2026-10-18 | 2026-10-20 | 7d | 0d | Electrician [32 h]; Construction Cost [3760.02] | 3,760.02 | 2,632.01 | 05 | 04 | 04 | H1.C.K1.00.EM.G.2040 | 1 |  |  |
| HAL-C-D-E-753 |  | Line Isolator Modules for Fire Alarm | 2d | 2026-09-24 A | 2026-10-13 A | HAL-C-D-E-743 SS | 100% |  | 2026-10-18 | 2026-10-20 |  |  | Electrician [32 h]; Construction Cost [163.42] | 163.42 | 163.42 | 05 | 04 | 04 | H1.C.K1.00.EM.G.2040 | 1 |  |  |
|  | 5 | **BLOCK E** |  | 2026-01-13 | 2026-10-28 |  |  |  |  |  |  |  |  |  |  |  |  |  |  |  |  |  |
|  | 1 | **STRUCTURAL** |  | 2026-01-13 | 2026-07-09 |  |  |  |  |  |  |  |  |  |  |  |  |  |  |  |  |  |
|  | 1 | **FOOTING** |  | 2026-01-13 | 2026-02-11 |  |  |  |  |  |  |  |  |  |  |  |  |  |  |  |  |  |
| HAL-C-E-S-150 |  | Excavation for footings | 6.12d | 2026-01-13 A | 2026-01-24 A | HAL-C-D-S-210 | 100% |  | 2026-02-21 | 2026-03-02 |  |  | General Labour [112 h]; Equipment Operator [112 h]; Truck [56 h]; Excavator [56 h]; Mini Roller Compactor [56 h]; Construction Cost [232737] | 232,737.27 | 232,737.27 | 05 | 01 | 05 | H1.C.K1.00.SW.F.1010 | 1 | PH1-MHR-ST-640 | 12 |
| HAL-C-E-S-101 |  | Anti Termite Below Footings | 1d | 2026-02-03 A | 2026-02-03 A | HAL-C-E-S-150 | 100% |  | 2026-03-04 | 2026-03-05 |  |  | Mason [16 h]; Construction Cost [8441.61] | 8,441.61 | 8,441.61 | 05 | 01 | 05 | H1.C.K1.00.SW.F.1030 | 1 | PH1-MHR-ST-1020 | 10 |
| HAL-C-E-S-102 |  | Vapour Barrier for Footings | 1d | 2026-02-03 A | 2026-02-03 A | HAL-C-E-S-101 | 100% |  | 2026-03-05 | 2026-03-07 |  |  | General Labour [16 h]; Construction Cost [6030.16] | 6,030.16 | 6,030.16 | 05 | 01 | 05 | H1.C.K1.00.SW.F.1040 | 1 | PH1-MHR-ST-1080 | 15 |
| HAL-C-E-S-103 |  | Lean Concrete Below Footings | 2d | 2026-02-03 A | 2026-02-03 A | HAL-C-E-S-102 | 100% |  | 2026-03-07 | 2026-03-09 |  |  | Mason [32 h]; Construction Cost [8238.87] | 8,238.87 | 8,238.87 | 05 | 01 | 05 | H1.C.K1.00.SW.F.1030 | 1 | PH1-MHR-ST-1020 | 10 |
| HAL-C-E-S-105 |  | Formwork for Footings | 6d | 2026-02-04 A | 2026-02-04 A | HAL-C-E-S-104 | 100% |  | 2026-03-14 | 2026-03-22 |  |  | Carperter [64 h]; Construction Cost [23267.9] | 23,267.89 | 23,267.89 | 05 | 01 | 05 |  | 1 |  |  |
| HAL-C-E-S-104 |  | Rebar for Footings | 4d | 2026-02-05 A | 2026-02-10 A | HAL-C-E-S-103 | 100% |  | 2026-03-09 | 2026-03-14 |  |  | Steel Fixer [64 h]; Construction Cost [93071.6] | 93,071.56 | 93,071.56 | 05 | 01 | 05 |  | 1 |  |  |
| HAL-C-E-S-106 |  | Pouring Concrete for Footings | 1d | 2026-02-11 A | 2026-02-11 A | HAL-C-E-S-105 | 100% |  | 2026-03-04 | 2026-03-05 |  |  | Carperter [16 h]; Mason [16 h]; Steel Fixer [16 h]; Concrete Mixer [8 h]; Equipment Operator [16 h]; Construction Cost [116339] | 116,339.45 | 116,339.45 | 05 | 01 | 05 | H1.C.K1.00.RC.F.1010 | 1 | PH1-MHR-ST-1030 | 21 |

| ID | WBS | Activity | Duration | Start | Finish | Predecessors | Complete | Planned start | Planned finish | Resources | Cost | Actual cost | Zone # | Phasing Code Category | Discipline | Project component code | 00 Activity ID | AMH Tender Act. ID | Tender Original Duration | project summary-6 | PS (su & rbf)-6 | New code for weekly report-6 | New discipline code-6 | Remarks |
| --- | --- | --- | --- | --- | --- | --- | --- | --- | --- | --- | --- | --- | --- | --- | --- | --- | --- | --- | --- | --- | --- | --- | --- | --- |
|  | 2 | **COLUMN NECK** |  | 2026-02-07 | 2026-03-18 |  |  |  |  |  |  |  |  |  |  |  |  |  |  |  |  |  |  |  |
| HAL-C-E-S-257 |  | Rebar for column neck | 4d | 2026-02-07 A | 2026-02-10 A | HAL-C-E-S-106 | 100% | 2026-03-23 | 2026-03-28 | Steel Fixer [64 h]; Construction Cost [21993.7] | 21,993.66 | 21,993.66 | 1 | 05 | 01 | 05 |  |  |  |  |  |  |  |  |
| HAL-C-E-S-267 |  | Formwork for column neck | 2d | 2026-02-14 A | 2026-03-02 A | HAL-C-E-S-257 | 100% | 2026-03-08 | 2026-03-10 | Carperter [32 h]; Construction Cost [5498.72] | 5,498.72 | 5,498.72 | 1 | 05 | 01 | 05 |  |  |  |  |  |  |  |  |
| HAL-C-E-S-297 |  | Pouring Concrete for column neck | 1d | 2026-02-19 A | 2026-03-02 A | HAL-C-E-S-267 | 100% | 2026-03-12 | 2026-03-14 | Mason [16 h]; Carperter [16 h]; Concrete Mixer [8 h]; Steel Fixer [16 h]; Equipment Operator [16 h]; Construction Cost [27492.4] | 27,492.39 | 27,492.39 | 1 | 05 | 01 | 05 | H1.C.K1.00.RC.F.1110 | PH1-MHR-ST-1030 | 21 |  |  |  |  |  |
| HAL-C-E-S-307 |  | Damp proof /Bitumin paint on Footings & column neck | 2d | 2026-02-25 A | 2026-03-03 A | HAL-C-E-S-297 | 100% | 2026-03-15 | 2026-03-17 | Painter [32 h]; Construction Cost [6903.81] | 6,903.81 | 6,903.81 | 1 | 05 | 01 | 05 | H1.C.K1.00.SW.F.1050 | PH1-MHR-ST-1080 | 15 |  |  |  |  |  |
| HAL-C-E-S-367 |  | Backfilling / Compaction up to Bottom of Grade Beams | 12d | 2026-03-02 A | 2026-03-18 A | HAL-C-E-S-307 | 100% | 2026-03-23 | 2026-04-06 | General Labour [256 h]; Truck [128 h]; Mini Roller Compactor [128 h]; Equipment Operator [256 h]; Wheel Loader [128 h]; Construction Cost [32707.9] | 32,707.87 | 32,707.87 | 1 | 05 | 01 | 05 | H1.C.K1.00.SW.F.1060 | PH1-MHR-ST-645 | 15 |  |  |  |  |  |
|  | 3 | **GRADE BEAM** |  | 2026-03-10 | 2026-04-12 |  |  |  |  |  |  |  |  |  |  |  |  |  |  |  |  |  |  |  |
| HAL-C-E-S-337 |  | Vapour barrier for Grade Beams | 2d | 2026-03-10 A | 2026-03-24 A | HAL-C-E-S-527 | 100% | 2026-04-01 | 2026-04-04 | General Labour [32 h]; Construction Cost [4019.9] | 4,019.9 | 4,019.9 | 1 | 05 | 01 | 05 | H1.C.K1.00.SW.F.1040 | PH1-MHR-ST-1080 | 15 |  |  |  |  |  |
| HAL-C-E-S-338 |  | Lean Concrete Below Grade Beams | 2d | 2026-03-10 A | 2026-03-24 A | HAL-C-E-S-337 | 100% | 2026-04-04 | 2026-04-06 | Mason [32 h]; Construction Cost [8238.87] | 8,238.87 | 8,238.87 | 1 | 05 | 01 | 05 | H1.C.K1.00.SW.F.1130 | PH1-MHR-ST-1020 | 10 |  |  |  |  |  |
| HAL-C-E-S-527 |  | Anti Termite Below Grade Beams | 1d | 2026-03-10 A | 2026-03-24 A | HAL-C-E-S-367 | 100% | 2026-03-31 | 2026-04-01 | Mason [16 h]; Construction Cost [8441.61] | 8,441.61 | 8,441.61 | 1 | 05 | 01 | 05 | H1.C.K1.00.SW.F.1030 | PH1-MHR-ST-1020 | 10 |  |  |  |  |  |
| HAL-C-E-S-339 |  | Rebar for Grade Beams | 5d | 2026-03-24 A | 2026-04-04 A | HAL-C-E-S-338, HAL-C-GEN-200 | 100% | 2026-06-07 | 2026-06-13 | Steel Fixer [80 h]; Construction Cost [24993.1] | 24,993.07 | 24,993.07 | 1 | 05 | 01 | 05 |  |  |  |  |  |  |  |  |
| HAL-C-E-S-340 |  | Formwork for Grade Beams | 2d | 2026-03-24 A | 2026-04-04 A | HAL-C-E-S-339 | 100% | 2026-06-13 | 2026-06-15 | Carperter [32 h]; Construction Cost [6248.27] | 6,248.27 | 6,248.27 | 1 | 05 | 01 | 05 |  |  |  |  |  |  |  |  |
| HAL-C-E-S-341 |  | Anchor bolts installation | 2d | 2026-04-02 A | 2026-04-04 A | HAL-C-E-S-340 SS | 100% | 2026-06-14 | 2026-06-16 | Carperter [32 h]; Construction Cost [5667.68] | 5,667.68 | 5,667.68 | 1 | 05 | 01 | 05 |  |  |  |  |  |  |  |  |
| HAL-C-E-S-342 |  | Pouring Concrete for Grade Beams | 1d | 2026-04-05 A | 2026-04-05 A | HAL-C-E-S-340, HAL-C-E-S-341 | 100% | 2026-06-16 | 2026-06-17 | Mason [16 h]; Carperter [16 h]; Concrete Mixer [8 h]; Steel Fixer [16 h]; Equipment Operator [16 h]; Construction Cost [31241.3] | 31,241.35 | 31,241.35 | 1 | 05 | 01 | 05 | H1.C.K1.00.RC.F.1110 | PH1-MHR-ST-1030 | 21 |  |  |  |  |  |
| HAL-C-E-S-347 |  | Damp proof /Bitumin paint on Grade Beams | 5d | 2026-04-11 A | 2026-04-12 A | HAL-C-E-S-342 | 100% | 2026-06-21 | 2026-06-27 | Painter [80 h]; Construction Cost [6903.81] | 6,903.81 | 6,903.81 | 1 | 05 | 01 | 05 | H1.C.K1.00.SW.F.1050 | PH1-MHR-ST-1080 | 15 |  |  |  |  |  |
|  | 5 | **SLAB ON GRADE** |  | 2026-04-14 | 2026-06-20 |  |  |  |  |  |  |  |  |  |  |  |  |  |  |  |  |  |  |  |
| HAL-C-E-S-377 |  | Backfilling / Compaction for Slab on Grade | 12d | 2026-04-14 A | 2026-04-25 A | HAL-C-E-S-347, HAL-C-TC-S-9100 | 100% | 2026-07-21 | 2026-08-04 | Mini Roller Compactor [128 h]; General Labour [256 h]; Equipment Operator [256 h]; Wheel Loader [128 h]; Truck [128 h]; Construction Cost [32707.9] | 32,707.87 | 32,707.87 | 1 | 05 | 01 | 05 |  |  |  |  |  |  |  |  |
| HAL-C-E-S-378 |  | Anti Termite Treatment below Ground Slab | 1d | 2026-05-14 A | 2026-05-19 A | HAL-C-E-S-377 | 100% | 2026-07-09 | 2026-07-09 | General Labour [16 h]; Construction Cost [11255.5] | 11,255.49 | 11,255.49 | 1 | 05 | 01 | 05 | H1.C.A1.06.SW.F.1220 | PH1-MHR-ST-645 | 15 |  |  |  |  |  |
| HAL-C-E-S-379 |  | Vapour barrier for below Ground Slab | 2d | 2026-05-14 A | 2026-05-19 A | HAL-C-E-S-378 | 100% | 2026-07-11 | 2026-07-12 | General Labour [32 h]; Construction Cost [10050.1] | 10,050.07 | 10,050.07 | 1 | 05 | 01 | 05 |  |  |  |  |  |  |  |  |
| HAL-C-E-S-382 |  | Pouring Concrete for Ground Slab | 4d | 2026-05-16 A | 2026-05-20 A | HAL-C-E-S-379 | 100% | 2026-07-13 | 2026-07-16 | Mason [64 h]; Carperter [64 h]; Steel Fixer [64 h]; Concrete Mixer [32 h]; Equipment Operator [64 h]; Construction Cost [304092] | 304,091.64 | 304,091.64 | 1 | 05 | 01 | 05 | H1.C.A1.06.RC.G.1210 | PH1-MHR-ST-496 | 24 |  |  |  |  |  |
| HAL-C-E-S-517 |  | Concrete pad | 7d | 2026-06-17 A | 2026-06-20 A | HAL-C-E-A-0150 | 100% | 2026-09-27 | 2026-10-05 | Mason [112 h]; Construction Cost [1803.82] | 1,803.82 | 1,803.82 |  | 05 | 01 | 05 |  |  |  |  |  |  |  |  |
|  | 4 | **COLUMNS & BEAMS** |  | 2026-03-07 | 2026-07-09 |  |  |  |  |  |  |  |  |  |  |  |  |  |  |  |  |  |  |  |
| HAL-C-E-S-6101 |  | Rebar for Tie Beams | 4d | 2026-03-07 A | 2026-03-09 A | HAL-C-E-S-5103 | 100% | 2026-08-18 | 2026-08-23 | Steel Fixer [64 h]; Construction Cost [7796.52] | 7,796.52 | 7,796.52 | 1 | 05 | 01 | 05 |  |  |  | 3 | 1 | 4 | 1 |  |
| HAL-C-E-S-6102 |  | Formwork for Tie Beams | 2d | 2026-03-07 A | 2026-03-09 A | HAL-C-E-S-6101 | 100% | 2026-08-23 | 2026-08-25 | Carperter [32 h]; Construction Cost [1949.44] | 1,949.44 | 1,949.44 | 1 | 05 | 01 | 05 |  |  |  | 3 | 1 | 4 | 1 |  |
| HAL-C-E-S-6103 |  | Pouring Concrete for Tie Beams | 1d | 2026-03-10 A | 2026-03-10 A | HAL-C-E-S-6102 | 100% | 2026-08-25 | 2026-08-26 | Mason [16 h]; Carperter [16 h]; Concrete Mixer [8 h]; Steel Fixer [16 h]; Equipment Operator [16 h]; Construction Cost [9745.95] | 9,745.95 | 9,745.95 | 1 | 05 | 01 | 05 | H1.C.K1.00.RC.F.1110 | PH1-MHR-ST-1030 | 21 | 3 | 1 | 4 | 1 |  |
| HAL-C-E-S-5101 |  | Rebar for column | 7d | 2026-05-16 A | 2026-05-24 A | HAL-C-E-S-377 | 100% | 2026-08-24 | 2026-08-31 | Steel Fixer [112 h]; Construction Cost [18494.8] | 18,494.75 | 14,795.8 | 1 | 05 | 01 | 05 |  |  |  | 3 | 1 | 4 | 1 |  |
| HAL-C-E-S-5102 |  | Formwork for column | 4d | 2026-06-01 A | 2026-06-02 A | HAL-C-E-S-5101, HAL-C-TC-M-3406 | 100% | 2026-07-26 | 2026-07-30 | Carperter [64 h]; Construction Cost [4623.84] | 4,623.84 | 4,623.84 | 1 | 05 | 01 | 05 |  |  |  | 3 | 1 | 4 | 1 |  |
| HAL-C-E-S-5103 |  | Pouring Concrete for column | 1d | 2026-06-04 A | 2026-06-04 A | HAL-C-E-S-5102 | 100% | 2026-07-28 | 2026-07-29 | Mason [16 h]; Carperter [16 h]; Concrete Mixer [8 h]; Steel Fixer [16 h]; Equipment Operator [16 h]; Construction Cost [23118.6] | 23,118.59 | 23,118.59 | 1 | 05 | 01 | 05 | H1.C.K1.00.RC.F.1110 | PH1-MHR-ST-1030 | 21 | 3 | 1 | 4 | 1 |  |
| HAL-C-E-S-6113 |  | Rebar for Beams | 4d | 2026-06-04 A | 2026-07-08 A | HAL-C-E-S-6103 | 100% | 2026-07-29 | 2026-08-03 | Steel Fixer [64 h]; Construction Cost [11954.6] | 11,954.65 | 11,954.65 | 1 | 05 | 01 | 05 |  |  |  | 3 | 1 | 4 | 1 | 1 |
| HAL-C-E-S-6123 |  | Formwork for Beams | 2d | 2026-07-08 A | 2026-07-08 A | HAL-C-E-S-6113, HAL-C-E-S-6113 FF | 100% | 2026-08-17 | 2026-08-18 | Carperter [32 h]; Construction Cost [2988.97] | 2,988.97 | 2,988.97 | 1 | 05 | 01 | 05 |  |  |  | 3 | 1 | 4 | 1 |  |
| HAL-C-E-S-6133 |  | Pouring Concrete for Beams | 1d | 2026-07-09 A | 2026-07-09 A | HAL-C-E-S-6123, HAL-C-E-S-6123 FF | 100% | 2026-08-19 | 2026-08-19 | Mason [16 h]; Carperter [16 h]; Concrete Mixer [8 h]; Steel Fixer [16 h]; Equipment Operator [16 h]; Construction Cost [14943.6] | 14,943.63 | 14,943.63 | 1 | 05 | 01 | 05 | H1.C.K1.00.RC.F.1110 | PH1-MHR-ST-1030 | 21 | 3 | 1 | 4 | 1 |  |

| ID | WBS | Activity | Duration | Start | Finish | Predecessors | Complete | Planned start | Planned finish | Resources | Cost | Actual cost | Remarks | Phasing Code Category | Discipline | Project component code | 00 Activity ID | Zone # |
| --- | --- | --- | --- | --- | --- | --- | --- | --- | --- | --- | --- | --- | --- | --- | --- | --- | --- | --- |
|  | 5 | **STRUCTURAL STEEL** |  | 2026-04-30 | 2026-08-13 |  |  |  |  |  |  |  |  |  |  |  |  |  |
| HAL-C-E-SS-0100 |  | Installation of columns | 3d | 2026-04-30 A | 2026-05-06 A | HAL-C-E-S-382, HAL-C-D-A-220 | 100% | 2026-08-09 | 2026-08-12 | Structural Steel Fixer [80 h]; General Labour [80 h]; Equipment Operator [80 h]; Mobile Crane [40 h]; Construction Cost [164363] | 164,362.65 | 164,362.65 | 15 | 05 | 08 | 05 |  |  |
| HAL-C-E-SS-0110 |  | Installation of raft and purlins | 5d | 2026-04-30 A | 2026-05-09 A | HAL-C-E-SS-0100 | 100% | 2026-08-15 | 2026-08-20 | Structural Steel Fixer [160 h]; General Labour [160 h]; Mobile Crane [80 h]; Equipment Operator [160 h]; Construction Cost [340061] | 340,060.66 | 340,060.66 | 15 | 05 | 08 | 05 |  |  |
| HAL-C-E-SS-1030 |  | Steel members for external platform | 5d | 2026-05-03 A | 2026-05-25 A | HAL-C-E-SS-620 | 100% | 2026-09-10 | 2026-09-16 | Construction Cost [27249.1]; General Labour [112 h]; Mobile Crane [56 h]; Structural Steel Fixer [112 h]; Equipment Operator [112 h] | 27,249.09 | 27,249.09 |  | 05 | 08 | 05 | H1.C.A1.SA.FI.G.0730 | 1 |
| HAL-C-E-SS-620 |  | Steel members for office area | 5d | 2026-05-03 A | 2026-05-25 A | HAL-C-E-SS-610, HAL-C-E-SS-0110 | 100% | 2026-08-25 | 2026-08-31 | Construction Cost [97318.2]; Structural Steel Fixer [112 h]; Mobile Crane [56 h]; General Labour [112 h]; Equipment Operator [112 h] | 97,318.17 | 97,318.17 |  | 05 | 08 | 05 | H1.C.A1.SA.FI.G.0730 | 1 |
| HAL-C-E-SS-610 |  | Intumescent paint to steel works | 5d | 2026-05-16 A | 2026-06-02 A | HAL-C-E-SS-0110 | 100% | 2026-08-17 | 2026-08-23 | Painter [112 h]; Construction Cost [269284] | 269,283.81 | 269,283.81 |  | 05 | 08 | 05 | H1.C.A1.SA.FI.G.0730 | 1 |
| HAL-C-E-SS-0140 |  | Installation of roof sheet | 5d | 2026-06-07 A | 2026-06-10 A | HAL-C-E-A-0120, HAL-C-E-SS-610, HAL-C-E-S-6133 | 100% | 2026-09-10 | 2026-09-16 | Roof sheet worker [160 h]; General Labour [160 h]; Mobile Crane [80 h]; Equipment Operator [160 h]; Construction Cost [453414] | 453,414.21 | 453,414.21 | 15 | 05 | 08 | 05 |  |  |
| HAL-C-E-SS-0130 |  | Installation of wall sandwich panel | 5d | 2026-07-16 A | 2026-07-30 A | HAL-C-E-A-0150 | 100% | 2026-08-25 | 2026-08-31 | Sandwich panel worker [112 h]; General Labour [112 h]; Mobile Crane [56 h]; Equipment Operator [112 h]; Construction Cost [170030] | 170,030.33 | 170,030.33 | 15 | 05 | 08 | 05 |  |  |
| HAL-C-E-SS-1040 |  | Epoxy paint for external platform | 5d | 2026-07-20 A | 2026-07-21 A | HAL-C-E-SS-1030, HAL-C-E-SS-1030 FF | 100% | 2026-08-31 | 2026-09-05 | Painter [80 h]; Construction Cost [6812.27] | 6,812.27 | 6,812.27 |  | 05 | 08 | 05 | H1.C.A1.SA.FI.G.0730 | 1 |
| HAL-C-E-SS-1020 |  | Epoxy paint to steel members at office area | 5d | 2026-08-12 A | 2026-08-13 A | HAL-C-E-SS-620 | 100% | 2026-09-21 | 2026-09-27 | Painter [112 h]; Construction Cost [24329.5] | 24,329.54 | 24,329.54 |  | 05 | 08 | 05 | H1.C.A1.SA.FI.G.0730 | 1 |
|  | 2 | **ARCHITECTURAL** |  | 2026-06-10 | 2026-10-28 |  |  |  |  |  |  |  |  |  |  |  |  |  |
|  | 1 | **MASONARY WORKS** |  | 2026-06-10 | 2026-07-02 |  |  |  |  |  |  |  |  |  |  |  |  |  |
| HAL-C-E-A-0120 |  | Block work at factory area | 15d | 2026-06-10 A | 2026-07-02 A | HAL-C-E-S-382, HAL-C-E-SS-0110 | 100% | 2026-08-26 | 2026-09-13 | AAC panel erector [240 h]; General Labour [240 h]; Equipment Operator [240 h]; Mobile Crane [120 h]; Construction Cost [38856.6] | 38,856.62 | 38,856.62 | 1 | 05 | 02 | 05 |  |  |
| HAL-C-E-A-0150 |  | Block work at office area | 10d | 2026-06-10 A | 2026-07-02 A | HAL-C-E-SS-0140 SS, HAL-C-E-SS-620, HAL-C-TC-S-9090 | 100% | 2026-09-17 | 2026-09-30 | AAC panel erector [160 h]; General Labour [160 h]; Mobile Crane [80 h]; Equipment Operator [160 h]; Construction Cost [9714] | 9,714 | 9,714 | 1 | 05 | 02 | 05 |  |  |
| HAL-C-E-A-170 |  | Block work at toilet area | 7d | 2026-06-10 A | 2026-07-02 A | HAL-C-E-A-0150, HAL-C-E-SS-1040, HAL-C-E-SS-1020, HAL-C-TC-A-9100 | 100% | 2026-09-30 | 2026-10-08 | Mason [112 h]; Construction Cost [15836.3] | 15,836.32 | 15,836.32 | 1 | 05 | 02 | 05 |  | 1 |
|  | 5 | **WALL FINISHES** |  | 2026-07-26 | 2026-10-22 |  |  |  |  |  |  |  |  |  |  |  |  |  |
| HAL-C-E-A-180 |  | Internal Wall Plaster | 15d | 2026-07-26 A | 2026-08-05 A | HAL-C-E-A-170, HAL-C-E-E-183, HAL-C-E-S-517 | 100% | 2026-09-08 | 2026-09-27 | Mason [240 h]; Construction Cost [29610.2] | 29,610.16 | 29,610.16 |  | 05 | 02 | 05 | H1.C.A1.SA.FI.G.0710 | 1 |
| HAL-C-E-A-230 |  | Paint to Plaster (Primer, Putty & First Coat) | 7d | 2026-08-12 A | 2026-10-22 A | HAL-C-E-A-250 | 100% | 2026-10-27 | 2026-11-04 | Painter [112 h]; Construction Cost [26649.5] | 26,649.45 | 26,649.45 |  | 05 | 02 | 05 | H1.C.A1.SA.FI.G.0730 | 1 |
|  | 2 | **CIELING FINISHES** |  | 2026-09-08 | 2026-09-24 |  |  |  |  |  |  |  |  |  |  |  |  |  |
| HAL-C-E-A-240 |  | Installation of Ceiling Gypsum Board | 5d | 2026-09-08 A | 2026-09-24 A | HAL-C-E-A-220, HAL-C-E-S-517 | 100% | 2026-09-24 | 2026-09-30 | Carperter [80 h]; Construction Cost [44650.2] | 44,650.24 | 44,650.24 |  | 05 | 02 | 05 | H1.C.A1.SA.FI.G.0820 | 1 |
|  | 6 | **FLOOR FINISHES** |  | 2026-08-02 | 2026-10-15 |  |  |  |  |  |  |  |  |  |  |  |  |  |
| HAL-C-E-A-220 |  | Tiles for Toilet | 7d | 2026-08-02 A | 2026-08-13 A | HAL-C-E-A-370 | 100% | 2026-09-27 | 2026-10-05 | Tile Fixer [112 h]; Construction Cost [48089.6] | 48,089.55 | 48,089.55 |  | 05 | 02 | 05 | H1.C.A1.SA.FI.G.0640 | 1 |
| HAL-C-E-A-250 |  | Tiles for Office Area | 2d | 2026-08-27 A | 2026-08-30 A | HAL-C-E-A-240, HAL-C-E-E-303 | 100% | 2026-11-01 | 2026-11-03 | Tile Fixer [32 h]; Construction Cost [25626.5] | 25,626.5 | 25,626.5 |  | 05 | 02 | 05 |  |  |
| HAL-C-E-A-420 |  | Epoxy paint | 5d | 2026-09-05 A | 2026-10-15 A | HAL-C-E-A-340 SS | 100% | 2026-10-28 | 2026-11-03 | Painter [112 h]; Construction Cost [102516] | 102,515.85 | 102,515.85 |  | 05 | 02 | 05 |  |  |
| HAL-C-E-A-390 |  | Granite strip | 2d | 2026-09-22 A | 2026-09-24 A | HAL-C-E-A-558 | 100% | 2026-10-10 | 2026-10-12 | Tile Fixer [32 h]; Construction Cost [1454.24] | 1,454.24 | 1,454.24 |  | 05 | 02 | 05 | H1.C.A1.SA.FI.G.0640 | 1 |

| ID | WBS | Activity | Duration | Start | Finish | Predecessors | Complete | Planned start | Planned finish | Total float | Free float | Resources | Cost | Actual cost | Phasing Code Category | Discipline | Project component code | Ordinal Start | Ordinal Finish | 00 Activity ID | Ordinal Duration | Zone # |
| --- | --- | --- | --- | --- | --- | --- | --- | --- | --- | --- | --- | --- | --- | --- | --- | --- | --- | --- | --- | --- | --- | --- |
|  | 3 | **DOORS & WINDOWS** |  | 2026-07-14 | 2026-09-13 |  |  |  |  |  |  |  |  |  |  |  |  |  |  |  |  |  |
| HAL-C-E-A-552 |  | Window (CW1) | 7d | 2026-07-14 A | 2026-09-13 A | HAL-C-E-SS-0130 | 100% | 2026-08-31 | 2026-09-08 |  |  | Carperter [112 h]; Construction Cost [90682.8] | 90,682.84 | 90,682.84 | 05 | 02 | 05 |  |  |  |  |  |
| HAL-C-E-A-558 |  | Skylight fixtures installation | 1d | 2026-08-03 A | 2026-08-06 A | HAL-C-E-A-557, HAL-C-TC-E-9120 | 100% | 2026-09-22 | 2026-09-22 |  |  | Carperter [16 h]; Construction Cost [61929.7] | 61,929.74 | 61,929.74 | 05 | 02 | 05 |  |  |  |  |  |
| HAL-C-E-A-553 |  | Roll up Shutter Door | 1d | 2026-08-11 A | 2026-08-12 A | HAL-C-E-A-552 | 100% | 2026-09-24 | 2026-09-26 |  |  | Carperter [16 h]; Construction Cost [66353.3] | 66,353.3 | 66,353.3 | 05 | 02 | 05 |  |  |  |  |  |
| HAL-C-E-A-200 |  | Supply and install (D5) 1000*2200mm single leaf steel door with door | 1d | 2026-08-13 A | 2026-09-10 A | HAL-C-E-A-553 | 100% | 2026-09-26 | 2026-09-27 |  |  | Carperter [16 h]; Construction Cost [15482.4] | 15,482.44 | 15,482.44 | 05 | 02 | 05 |  |  |  |  |  |
| HAL-C-E-A-557 |  | Supply and install fire rated 45 min (D2) 1200*2200 mm single leaf steel door | 1d | 2026-08-13 A | 2026-09-10 A | HAL-C-E-A-556 | 100% | 2026-09-30 | 2026-10-01 |  |  | Carperter [16 h]; Construction Cost [16146] | 16,145.97 | 16,145.97 | 05 | 02 | 05 |  |  |  |  |  |
| HAL-C-E-A-554 |  | Supply and install (D4) 800*2200 mm single leaf aluminum door with door | 1d | 2026-09-08 A | 2026-09-10 A | HAL-C-E-A-200 | 100% | 2026-09-24 | 2026-09-26 |  |  | Carperter [16 h]; Construction Cost [21896.6] | 21,896.59 | 21,896.59 | 05 | 02 | 05 |  |  |  |  |  |
| HAL-C-E-A-555 |  | Supply and install (D7) 1000*2200 mm single leaf aluminum door with door | 1d | 2026-09-08 A | 2026-09-10 A | HAL-C-E-A-554 | 100% | 2026-09-26 | 2026-09-27 |  |  | Carperter [16 h]; Construction Cost [7520.04] | 7,520.04 | 7,520.04 | 05 | 02 | 05 |  |  |  |  |  |
| HAL-C-E-A-556 |  | Supply and install (D3) 1000*2200 mm single leaf aluminum door with door | 1d | 2026-09-08 A | 2026-09-10 A | HAL-C-E-A-555 | 100% | 2026-09-27 | 2026-09-28 |  |  | Carperter [16 h]; Construction Cost [15482.4] | 15,482.44 | 15,482.44 | 05 | 02 | 05 |  |  |  |  |  |
|  | 4 | **WATER PROOFING WORKS** |  | 2026-08-05 | 2026-08-06 |  |  |  |  |  |  |  |  |  |  |  |  |  |  |  |  |  |
| HAL-C-E-A-370 |  | Waterproofing membrane for toilets | 4d | 2026-08-05 A | 2026-08-06 A | HAL-C-E-M-200, HAL-C-E-A-180, HAL-C-TC-S-9110 | 100% | 2026-09-20 | 2026-09-26 |  |  | General Labour [64 h]; Construction Cost [4653.33] | 4,653.33 | 4,653.33 | 05 | 02 | 05 |  |  |  |  |  |
|  | 7 | **METAL WORKS** |  | 2026-08-13 | 2026-10-24 |  |  |  |  |  |  |  |  |  |  |  |  |  |  |  |  |  |
| HAL-C-E-A-292 |  | Aluminium composite panel | 5d | 2026-08-13 A | 2026-10-03 A | HAL-C-E-A-291 | 100% | 2026-11-05 | 2026-11-11 |  |  | Steel Fixer [80 h]; General Labour [80 h]; Construction Cost [175670] | 175,670.36 | 175,670.36 | 05 | 02 | 05 |  |  |  |  |  |
| HAL-C-E-A-290 |  | Steel Ladder | 2d | 2026-08-20 A | 2026-08-29 A | HAL-C-E-A-390 | 100% | 2026-10-31 | 2026-11-02 |  |  | Steel Fixer [32 h]; General Labour [32 h]; Construction Cost [9510.64] | 9,510.64 | 9,510.64 | 05 | 02 | 05 |  |  |  |  |  |
| HAL-C-E-A-300 |  | Galvanised Steel Gratings | 2d | 2026-10-08 A | 2026-10-10 A | HAL-C-E-A-292 | 100% | 2026-10-17 | 2026-10-18 |  |  | Steel Fixer [32 h]; General Labour [32 h]; Construction Cost [6237.21] | 6,237.21 | 6,237.21 | 05 | 02 | 05 |  |  |  |  |  |
| HAL-C-E-A-291 |  | Steel railing works | 4d | 2026-10-22 A | 2026-10-24 A | HAL-C-E-A-290 | 100% | 2026-10-26 | 2026-10-29 |  |  | Steel Fixer [64 h]; General Labour [64 h]; Construction Cost [7497.92] | 7,497.92 | 7,497.92 | 05 | 02 | 05 |  |  |  |  |  |
|  | 8 | **SPECIALTIES** |  | 2026-09-22 | 2026-10-28 |  |  |  |  |  |  |  |  |  |  |  |  |  |  |  |  |  |
| HAL-C-E-A-320 |  | Installation of fittings | 5d | 2026-09-22 A | 2026-09-24 A | HAL-C-E-A-300 SS | 100% | 2026-10-18 | 2026-10-24 |  |  | Plumber [80 h]; Construction Cost [21686.5] | 21,686.47 | 21,686.47 | 05 | 02 | 05 |  |  |  |  |  |
| HAL-C-E-A-340 |  | Furniture Installation | 1d | 2026-10-25 A | 2026-10-25 A | HAL-C-E-A-570 | 100% | 2026-10-29 | 2026-10-29 |  |  | General Labour [16 h]; Mason [16 h]; Construction Cost [10561.2] | 10,561.24 | 10,561.24 | 05 | 02 | 05 |  |  |  |  |  |
| HAL-C-E-A-570 |  | Identification sign; ID01 & ID02 | 3d | 2026-10-26 | 2026-10-28 | HAL-C-E-A-320 SS |  |  |  | 4d | 0d | Mason [48 h]; Construction Cost [9289.46] | 9,289.46 |  | 05 | 02 | 05 |  |  |  |  |  |
|  | 3 | **MECHANICAL** |  | 2026-04-05 | 2026-09-26 |  |  |  |  |  |  |  |  |  |  |  |  |  |  |  |  |  |
|  | 1 | **HVAC** |  | 2026-06-17 | 2026-09-24 |  |  |  |  |  |  |  |  |  |  |  |  |  |  |  |  |  |
|  | 1 | **FIRST STAGE** |  | 2026-06-17 | 2026-07-30 |  |  |  |  |  |  |  |  |  |  |  |  |  |  |  |  |  |
| HAL-C-E-M-140 |  | Installation of HVAC Ducts | 2d | 2026-06-17 A | 2026-07-30 A | HAL-C-E-M-160 | 100% | 2026-12-07 | 2026-12-08 |  |  | Ductman [32 h]; Construction Cost [141482] | 141,481.82 | 141,481.82 | 05 | 03 | 05 | 0 | 0 | H1.C.A1.0A.MH.G.1040 | 0 | 1 |
| HAL-C-E-M-170 |  | Installation of Duct insulation | 2d | 2026-06-17 A | 2026-07-30 A | HAL-C-E-M-140 | 100% | 2026-12-09 | 2026-12-10 |  |  | Ductman [32 h]; Construction Cost [18747.3] | 18,747.27 | 18,747.27 | 05 | 03 | 05 |  |  |  |  |  |

| ID | WBS | Activity | Duration | Start | Finish | Predecessors | Complete | Planned start | Planned finish | Resources | Cost | Actual cost | Ordinal Start | Ordinal Finish | 00 Activity ID | Ordinal Duration | Zone # | Phasing Code Category | Discipline | Project component code | Remarks |
| --- | --- | --- | --- | --- | --- | --- | --- | --- | --- | --- | --- | --- | --- | --- | --- | --- | --- | --- | --- | --- | --- |
|  | 2 | **SECOND STAGE** |  | 2026-07-30 | 2026-09-24 |  |  |  |  |  |  |  |  |  |  |  |  |  |  |  |  |
| HAL-C-E-M-130 |  | Installation of Exhaust Fans | 2d | 2026-07-30 A | 2026-07-30 A | HAL-C-E-A-230 | 100% | 2026-10-21 | 2026-10-24 | AC Technician [32 h]; Construction Cost [9331.24] | 9,331.24 | 9,331.24 | 0 | 0 | H1.C.A1.0A.MH.X.4050 | 0 | 1 | 05 | 03 | 05 |  |
| HAL-C-E-M-160 |  | Installation of Wall Propeller Type Exhaust Fan | 4d | 2026-09-03 A | 2026-09-05 A | HAL-C-E-M-130 | 100% | 2026-10-19 | 2026-10-22 | AC Technician [64 h]; Construction Cost [17417.7] | 17,417.74 | 17,417.74 |  |  |  |  |  | 05 | 03 | 05 |  |
| HAL-C-E-M-340 |  | Supply, install, test and commission door grilles & exhaust louvers | 2d | 2026-09-05 A | 2026-09-10 A | HAL-C-E-M-339 | 100% | 2026-10-26 | 2026-10-27 | Ductman [32 h]; Construction Cost [7188.28] | 7,188.28 | 7,188.28 | 0 | 0 | H1.C.A1.0A.MH.G.3010 | 0 | 1 | 05 | 03 | 05 |  |
| HAL-C-E-M-339 |  | Installation of Diffuser | 2d | 2026-09-19 A | 2026-09-24 A | HAL-C-E-M-170 | 100% | 2026-11-01 | 2026-11-03 | Ductman [32 h]; Construction Cost [2764.72] | 2,764.72 | 2,764.72 | 0 | 0 | H1.C.A1.0A.MH.G.3010 | 0 | 1 | 05 | 03 | 05 |  |
|  | 2 | **FIRE FIGHTING SYSTEM** |  | 2026-06-11 | 2026-08-25 |  |  |  |  |  |  |  |  |  |  |  |  |  |  |  |  |
|  | 1 | **FIRST STAGE** |  | 2026-06-11 | 2026-08-06 |  |  |  |  |  |  |  |  |  |  |  |  |  |  |  |  |
| HAL-C-E-M-300 |  | Installation of Fire Fighting Pipes (Seamless Black Steel) | 7d | 2026-06-11 A | 2026-08-06 A | HAL-C-E-A-230 | 100% | 2026-12-22 | 2026-12-30 | Pipe Fitter [112 h]; Construction Cost [60425.7] | 60,425.74 | 60,425.74 | 0 | 0 | H1.C.A1.0A.MF.G.1010 | 0 | 1 | 05 | 03 | 05 | 1 |
| HAL-C-E-M-310 |  | Installation of Fire Fighting Valve | 5d | 2026-06-13 A | 2026-08-06 A | HAL-C-E-M-300 | 100% | 2026-12-30 | 2027-01-05 | Pipe Fitter [80 h]; Construction Cost [12712.2] | 12,712.18 | 12,712.18 | 0 | 0 | H1.C.A1.0A.MF.G.2010 | 0 | 1 | 05 | 03 | 05 | 1 |
|  | 2 | **SECOND STAGE** |  | 2026-06-17 | 2026-08-25 |  |  |  |  |  |  |  |  |  |  |  |  |  |  |  |  |
| HAL-C-E-M-320 |  | Installation of Fire Hose Cabinet | 3d | 2026-06-17 A | 2026-08-25 A | HAL-C-E-M-310 | 100% | 2026-12-14 | 2026-12-16 | Pipe Fitter [48 h]; Construction Cost [11147.4] | 11,147.36 | 11,147.36 | 0 | 0 | H1.C.A1.0A.MF.G.3010 | 0 | 1 | 05 | 03 | 05 |  |
| HAL-C-E-M-370 |  | Supply, install, test and commission Fire Department Connection(FDC) | 3d | 2026-06-17 A | 2026-08-06 A | HAL-C-E-M-340 | 100% | 2026-11-07 | 2026-11-10 | Pipe Fitter [48 h]; Construction Cost [2598.84] | 2,598.84 | 2,598.84 | 0 | 0 | H1.C.A1.0A.MF.G.3010 | 0 | 1 | 05 | 03 | 05 |  |
|  | 3 | **SEWER AND DRAINAGE SYSTEM** |  | 2026-04-05 | 2026-09-26 |  |  |  |  |  |  |  |  |  |  |  |  |  |  |  |  |
|  | 1 | **FIRST STAGE** |  | 2026-04-05 | 2026-08-06 |  |  |  |  |  |  |  |  |  |  |  |  |  |  |  |  |
| HAL-C-E-M-200 |  | Installation of Sanitary Waste / Drainage Pipes | 4d | 2026-04-05 A | 2026-05-02 A | HAL-C-E-S-347 | 100% | 2026-06-23 | 2026-06-28 | Plumber [64 h]; Construction Cost [14362.4] | 14,362.41 | 14,362.41 | 0 | 0 | H1.C.K1.00.MP.G.1020 | 0 | 1 | 05 | 03 | 05 |  |
| HAL-C-E-M-220 |  | Installation of Floor Drain | 2d | 2026-06-17 A | 2026-08-06 A | HAL-C-E-M-200, HAL-C-E-A-220 | 100% | 2026-11-14 | 2026-11-15 | Plumber [32 h]; Construction Cost [10616.5] | 10,616.53 | 10,616.53 |  |  |  |  | 1 | 05 | 03 | 05 |  |
| HAL-C-E-M-380 |  | Installation of Trench drain | 5d | 2026-06-17 A | 2026-08-06 A | HAL-C-E-M-220 | 100% | 2026-11-16 | 2026-11-21 | Plumber [80 h]; Construction Cost [11379.6] | 11,379.59 | 11,379.59 |  |  |  |  |  | 05 | 03 | 05 |  |
|  | 2 | **SECOND STAGE** |  | 2026-08-15 | 2026-09-26 |  |  |  |  |  |  |  |  |  |  |  |  |  |  |  |  |
| HAL-C-E-M-180 |  | Installation of Electric Water Heater | 2d | 2026-08-15 A | 2026-08-15 A | HAL-C-E-M-380 | 100% | 2026-10-04 | 2026-10-05 | Plumber [32 h]; Construction Cost [1592.48] | 1,592.48 | 1,592.48 | 0 | 0 | H1.C.K1.00.MP.G.1030 | 0 | 1 | 05 | 03 | 05 |  |
| HAL-C-E-M-429 |  | Installation of Roof Vent Cap | 2d | 2026-08-19 A | 2026-08-22 A | HAL-C-E-M-428 | 100% | 2026-10-12 | 2026-10-14 | Pipe Fitter [32 h]; Construction Cost [829.41] | 829.41 | 829.41 |  |  |  |  |  | 05 | 03 | 05 |  |
| HAL-C-E-M-428 |  | Installation of Water Tap | 2d | 2026-08-27 A | 2026-09-19 A | HAL-C-E-M-210, HAL-C-E-M-270 | 100% | 2026-10-17 | 2026-10-19 | Plumber [32 h]; Construction Cost [2654.13] | 2,654.13 | 2,654.13 |  |  |  |  |  | 05 | 03 | 05 |  |
| HAL-C-E-M-190 |  | Installation of Sanitary Fixture and Accessories | 4d | 2026-09-20 A | 2026-09-26 A | HAL-C-E-M-180 | 100% | 2026-10-05 | 2026-10-10 | Plumber [64 h]; Construction Cost [16243] | 16,243.04 | 16,243.04 | 0 | 0 | H1.C.K1.00.MP.G.2040 | 0 | 1 | 05 | 03 | 05 |  |
| HAL-C-E-M-210 |  | Installation of Lavotary /Wash Basin | 2d | 2026-09-20 A | 2026-09-26 A | HAL-C-E-M-180, HAL-C-E-M-190 | 100% | 2026-10-10 | 2026-10-12 | Plumber [32 h]; Construction Cost [20348.3] | 20,348.35 | 20,348.35 |  |  |  |  | 1 | 05 | 03 | 05 |  |
| HAL-C-E-M-270 |  | Installation of Bib Tap | 2d | 2026-09-20 A | 2026-09-26 A | HAL-C-E-M-190, HAL-C-E-M-210 | 100% | 2026-10-12 | 2026-10-14 | Plumber [32 h]; Construction Cost [2211.78] | 2,211.78 | 2,211.78 |  |  |  |  |  | 05 | 03 | 05 |  |

| ID | WBS | Activity | Duration | Start | Finish | Predecessors | Complete | Remaining | Planned start | Planned finish | Total float | Free float | Resources | Cost | Actual cost | Ordinal Start | Ordinal Finish | 00 Activity ID | Ordinal Duration | Zone # | Phasing Code Category | Discipline | Project component code | Remarks |
| --- | --- | --- | --- | --- | --- | --- | --- | --- | --- | --- | --- | --- | --- | --- | --- | --- | --- | --- | --- | --- | --- | --- | --- | --- |
|  | 4 | **WATER SUPPLY SYSTEM** |  | 2026-07-02 | 2026-08-15 |  |  |  |  |  |  |  |  |  |  |  |  |  |  |  |  |  |  |  |
|  | 1 | **FIRST STAGE** |  | 2026-07-02 | 2026-08-15 |  |  |  |  |  |  |  |  |  |  |  |  |  |  |  |  |  |  |  |
| HAL-C-E-M-290 |  | Installation of Water Supply Pipes | 4d | 2026-07-02 A | 2026-08-15 A | HAL-C-E-A-230 | 100% |  | 2026-10-07 | 2026-10-12 |  |  | Plumber [64 h]; Construction Cost [19520.2] | 19,520.16 | 19,520.16 | 0 | 0 | H1.C.K1.00.MP.G.1010 | 0 | 1 | 05 | 03 | 05 |  |
| HAL-C-E-M-280 |  | Installation of Water Supply Valve | 2d | 2026-08-06 A | 2026-08-15 A | HAL-C-E-M-290 | 100% |  | 2026-10-31 | 2026-11-02 |  |  | Plumber [32 h]; Construction Cost [15736.8] | 15,736.79 | 15,736.79 | 0 | 0 | H1.C.K1.00.MP.G.2010 | 0 | 1 | 05 | 03 | 05 |  |
|  | 2 | **SECOND STAGE** |  | 2026-07-04 | 2026-08-08 |  |  |  |  |  |  |  |  |  |  |  |  |  |  |  |  |  |  |  |
| HAL-C-E-M-330 |  | Capped connection | 5d | 2026-07-04 A | 2026-08-08 A | HAL-C-E-M-280 | 100% |  | 2026-10-14 | 2026-10-20 |  |  | Plumber [80 h]; Construction Cost [287.53] | 287.53 | 287.53 |  |  |  |  |  | 05 | 03 | 05 |  |
|  | 4 | **ELECTRICAL** |  | 2026-04-05 | 2026-10-27 |  |  |  |  |  |  |  |  |  |  |  |  |  |  |  |  |  |  |  |
|  | 1 | **FIRST STAGE** |  | 2026-04-05 | 2026-10-25 |  |  |  |  |  |  |  |  |  |  |  |  |  |  |  |  |  |  |  |
| HAL-C-E-E-113 |  | Installation of Earthing and Grounding | 5d | 2026-04-05 A | 2026-10-25 A | HAL-C-E-E-223 | 100% |  | 2026-11-04 | 2026-11-10 |  |  | Electrician [80 h]; Construction Cost [17002.4] | 17,002.41 | 17,002.41 |  |  | H1.C.K1.00.EM.G.2040 |  | 1 | 05 | 04 | 05 | 1 |
| HAL-C-E-E-183 |  | Installation of Sleeves & Power outlet | 8d | 2026-04-05 A | 2026-09-22 A | HAL-C-E-A-170 | 100% |  | 2026-09-28 | 2026-10-07 |  |  | Electrician [128 h]; Construction Cost [2853.19] | 2,853.19 | 2,853.19 |  |  |  |  | 1 | 05 | 04 | 05 | 1 |
| HAL-C-E-E-143 |  | Installation of Conduits and wiring outlets - Fire Alarm System | 4d | 2026-05-25 A | 2026-06-11 A | HAL-C-E-A-170 | 100% |  | 2026-09-27 | 2026-10-01 |  |  | Electrician [64 h]; Construction Cost [2026.84] | 2,026.84 | 2,026.84 |  |  | H1.C.K1.00.EL.G.1020 |  | 1 | 05 | 04 | 05 |  |
| HAL-C-E-E-163 |  | Installation of Conduites for Lighting Fixture | 4d | 2026-05-25 A | 2026-06-11 A | HAL-C-E-E-133 | 100% |  | 2026-10-11 | 2026-10-15 |  |  | Electrician [64 h]; Construction Cost [3983.66] | 3,983.66 | 3,983.66 |  |  | H1.C.K1.00.EM.G.2030 |  | 1 | 05 | 04 | 05 |  |
| HAL-C-E-E-233 |  | Installation of Wires | 4d | 2026-06-09 A | 2026-09-09 A | HAL-C-E-E-163 | 100% |  | 2026-10-22 | 2026-10-27 |  |  | Electrician [64 h]; Construction Cost [7966.69] | 7,966.69 | 7,966.69 |  |  |  |  |  | 05 | 04 | 05 | 1 |
| HAL-C-E-E-223 |  | Installation of LV Cables | 4d | 2026-09-05 A | 2026-10-14 A | HAL-C-E-E-213 | 100% |  | 2026-10-07 | 2026-10-12 |  |  | Electrician [64 h]; Construction Cost [31551] | 31,550.99 | 31,550.99 |  |  |  |  |  | 05 | 04 | 05 |  |
|  | 2 | **SECOND STAGE** |  | 2026-06-17 | 2026-10-27 |  |  |  |  |  |  |  |  |  |  |  |  |  |  |  |  |  |  |  |
| HAL-C-E-E-273 |  | Installation of Access Control System | 5d | 2026-06-17 A | 2026-10-26 | HAL-C-E-E-410, HAL-C-E-E-153 | 80% | 1d | 2026-10-24 | 2026-10-29 | 5.4d | 0d | Electrician [80 h]; Construction Cost [24315.4] | 24,315.41 | 19,452.33 |  |  | H1.C.K1.00.EM.G.2040 |  | 1 | 05 | 04 | 05 |  |
| HAL-C-E-E-410 |  | Installation of CCTV System | 7d | 2026-06-17 A | 2026-10-14 A | HAL-C-E-E-233 | 100% |  | 2026-10-15 | 2026-10-24 |  |  | Plumber [112 h]; Construction Cost [66177.6] | 66,177.58 | 66,177.58 |  |  |  |  |  | 05 | 04 | 05 |  |
| HAL-C-E-E-243 |  | Installation of LP-1 Panel | 2d | 2026-07-26 A | 2026-10-01 A | HAL-C-E-E-193 | 100% |  | 2026-09-21 | 2026-09-24 |  |  | Electrician [32 h]; Construction Cost [15128.5] | 15,128.55 | 15,128.55 |  |  | H1.C.K1.00.EM.G.2020 |  | 1 | 05 | 04 | 05 |  |
| HAL-C-E-E-213 |  | Installation of Telephone Cabinet | 2d | 2026-07-30 A | 2026-10-01 A | HAL-C-E-E-253 | 100% |  | 2026-09-30 | 2026-10-03 |  |  | Electrician [32 h]; Construction Cost [23299.8] | 23,299.84 | 23,299.84 |  |  |  |  | 1 | 05 | 04 | 05 |  |
| HAL-C-E-E-420 |  | Installation of Solar power plant | 2d | 2026-08-17 A | 2026-10-12 A | HAL-C-D-E-1040 SS | 100% |  | 2026-10-15 | 2026-10-18 |  |  | Plumber [112 h]; Construction Cost [218966] | 218,965.89 | 218,965.89 |  |  |  |  |  | 05 | 04 | 05 |  |
| HAL-C-E-E-173 |  | Installation of Wiring Devices | 4d | 2026-08-29 A | 2026-10-01 A | HAL-C-E-E-183, HAL-C-E-A-230, HAL-C-E-E-113 | 100% |  | 2026-11-07 | 2026-11-11 |  |  | Electrician [64 h]; Construction Cost [20742.2] | 20,742.16 | 20,742.16 |  |  | H1.C.K1.00.EM.G.3020 |  | 1 | 05 | 04 | 05 |  |
| HAL-C-E-E-203 |  | Installation of Disconnect Switches | 2d | 2026-08-29 A | 2026-10-12 A | HAL-C-E-E-173 | 100% |  | 2026-11-11 | 2026-11-14 |  |  | Electrician [32 h]; Construction Cost [25808.4] | 25,808.36 | 25,808.36 |  |  |  |  |  | 05 | 04 | 05 |  |
| HAL-C-E-E-193 |  | Installation of Main Distribution Board | 2d | 2026-09-08 A | 2026-10-14 A | HAL-C-E-E-233 | 100% |  | 2026-10-06 | 2026-10-08 |  |  | Electrician [32 h]; Construction Cost [25479.7] | 25,479.66 | 25,479.66 |  |  | H1.C.K1.00.EM.G.2020 |  | 1 | 05 | 04 | 05 |  |
| HAL-C-E-E-153 |  | Installation of Lighting fixtures | 4d | 2026-09-15 A | 2026-10-12 A | HAL-C-E-E-233 | 100% |  | 2026-10-13 | 2026-10-18 |  |  | Electrician [64 h]; Construction Cost [59751.1] | 59,751.14 | 59,751.14 |  |  | H1.C.K1.00.EM.G.3010 |  | 1 | 05 | 04 | 05 |  |
| HAL-C-E-E-253 |  | Installation of PP-AC panel | 2d | 2026-09-17 A | 2026-10-14 A | HAL-C-E-E-243 | 100% |  | 2026-10-14 | 2026-10-17 |  |  | Electrician [32 h]; Construction Cost [18214] | 18,213.99 | 18,213.99 |  |  | H1.C.K1.00.EM.G.2020 |  | 1 | 05 | 04 | 05 |  |
| HAL-C-E-E-123 |  | Installation of Fire Alarm Control Panel | 4d | 2026-09-22 A | 2026-09-24 A | HAL-C-E-E-143 | 100% |  | 2026-10-10 | 2026-10-14 |  |  | Electrician [64 h]; Construction Cost [16216.6] | 16,216.62 | 16,216.62 |  |  | H1.C.K1.00.EL.X.4120 |  | 1 | 05 | 04 | 05 |  |
| HAL-C-E-E-133 |  | Installation of Fire Detectors & Accessories | 4d | 2026-09-22 A | 2026-10-12 A | HAL-C-E-E-123 | 100% |  | 2026-10-14 | 2026-10-19 |  |  | Electrician [64 h]; Construction Cost [31219.2] | 31,219.23 | 31,219.23 |  |  | H1.C.K1.00.EL.G.3020 |  | 1 | 05 | 04 | 05 |  |
| HAL-C-E-E-303 |  | Firewarning flash light with sounder; wall mounted, Weather proof | 2d | 2026-09-22 A | 2026-09-24 A | HAL-C-E-E-293 | 100% |  | 2026-10-28 | 2026-10-31 |  |  | Electrician [32 h]; Construction Cost [2963.79] | 2,963.79 | 2,963.79 |  |  | H1.C.K1.00.EM.G.2040 |  | 1 | 05 | 04 | 05 |  |
| HAL-C-E-E-283 |  | Monitor Modules for Fire Alarm | 2d | 2026-09-24 A | 2026-10-27 | HAL-C-E-E-273, HAL-C-E-E-253, HAL-C-E-E-213 | 70% | 0.6d | 2026-10-24 | 2026-10-26 | 5.4d | 0d | Electrician [32 h]; Construction Cost [3760.02] | 3,760.02 | 2,632.01 |  |  | H1.C.K1.00.EM.G.2040 |  | 1 | 05 | 04 | 05 |  |
| HAL-C-E-E-293 |  | Line Isolator Modules for Fire Alarm | 2d | 2026-09-24 A | 2026-10-14 A | HAL-C-E-E-283 | 100% |  | 2026-10-26 | 2026-10-28 |  |  | Electrician [32 h]; Construction Cost [163.42] | 163.42 | 163.42 |  |  | H1.C.K1.00.EM.G.2040 |  | 1 | 05 | 04 | 05 |  |

| ID | WBS | Activity | Duration | Start | Finish | Predecessors | Complete | Planned start | Planned finish | Resources | Cost | Actual cost | 00 Activity ID | Zone # | Phasing Code Category | Discipline | AMH Tender Act. ID | Tender Original Duration | Remarks |
| --- | --- | --- | --- | --- | --- | --- | --- | --- | --- | --- | --- | --- | --- | --- | --- | --- | --- | --- | --- |
|  | 2 | **SITE INFRASTRUCTURE** |  | 2026-01-20 | 2026-11-02 |  |  |  |  |  |  |  |  |  |  |  |  |  |  |
|  | 1 | **SITE WORKS** |  | 2026-01-20 | 2026-08-29 |  |  |  |  |  |  |  |  |  |  |  |  |  |  |
| HAL-C-GEN-180 |  | Initial Site Survey and Setting out | 3d | 2026-01-20 A | 2026-01-21 A | HAL-C-GEN-10 | 100% | 2026-01-26 | 2026-01-28 | General Labour [48 h]; Surveyor [48 h]; Construction Cost |  |  | H1.C.X0.00.SW.X.2010 | 1 | 05 | 06 |  |  |  |
| HAL-C-GEN-190 |  | Excavation to the target grading level | 20d | 2026-01-24 A | 2026-02-19 A | HAL-C-GEN-180, HAL-C-GEN-620 | 100% | 2026-03-21 | 2026-04-13 | General Labour [320 h]; Equipment Operator [320 h]; Truck [160 h]; Excavator [160 h]; Mini Roller Compactor [160 h]; Construction Cost [99293.3] | 99,293.32 | 99,293.32 | H1.C.K1.00.SW.F.1010 | 1 | 05 | 06 | PH1-MHR-ST-640 | 12 |  |
| HAL-C-GEN-200 |  | Backfilling to reach target level | 20d | 2026-08-22 A | 2026-08-29 A | HAL-C-GEN-190 | 100% | 2026-09-12 | 2026-10-05 | General Labour [320 h]; Equipment Operator [320 h]; Motor Grader [160 h]; Roller Compactor [160 h]; Truck [160 h]; Construction Cost [18171] | 18,170.97 | 18,170.97 | H1.C.K1.00.SW.F.1010 | 1 | 05 | 06 | PH1-MHR-ST-640 | 12 |  |
|  | 4 | **NETWORKS** |  | 2026-05-05 | 2026-09-19 |  |  |  |  |  |  |  |  |  |  |  |  |  |  |
|  | 6 | **INTERNAL FIRE FIGHTING WATER SUPPLY SYSTEM (OUTSIDE BUILDING UNITS)** |  | 2026-05-05 | 2026-08-04 |  |  |  |  |  |  |  |  |  |  |  |  |  |  |
| HAL-C-ENV-F-212 |  | Excavation for External Fire Fighting Works | 7d | 2026-05-05 A | 2026-08-03 A | HAL-C-C-SS-310, HAL-C-GEN-200, HAL-E-SA-EX-700, HAL-E-SA-EX-720, HAL-E-MT-ENV-2060 | 100% | 2026-09-24 | 2026-10-03 | General Labour [112 h]; Equipment Operator [112 h]; Excavator [56 h]; Construction Cost [7464.74] | 7,464.74 | 7,464.74 |  |  | 05 | 06 |  |  | 1 |
| HAL-C-ENV-F-172 |  | Installation of HDPE PN16 Pipes (200 Dia) | 10d | 2026-05-16 A | 2026-08-03 A | HAL-C-ENV-F-212, HAL-P-ST-M-430, HAL-P-ST-EN-100 | 100% | 2026-10-08 | 2026-10-20 | Pipe Fitter [160 h]; Construction Cost [111975] | 111,975.49 | 111,975.49 |  |  | 05 | 06 |  |  | 1 |
| HAL-C-ENV-F-202 |  | Warning Tapes | 2d | 2026-05-16 A | 2026-08-03 A | HAL-C-ENV-F-172, HAL-P-ST-M-660 | 100% | 2026-09-15 | 2026-09-17 | Plumber [32 h]; Construction Cost [7464.74] | 7,464.74 | 7,464.74 |  |  | 05 | 06 |  |  |  |
| HAL-C-ENV-F-222 |  | Backfilling for External Fire Fighting Works | 14d | 2026-06-17 A | 2026-08-04 A | HAL-C-ENV-F-192 | 100% | 2026-10-14 | 2026-10-29 | General Labour [224 h]; Equipment Operator [224 h]; Mini Roller Compactor [112 h]; Construction Cost [7464.74] | 7,464.74 | 7,464.74 |  |  | 05 | 06 |  |  |  |
| HAL-C-ENV-F-192 |  | Installation of Valves | 5d | 2026-07-14 A | 2026-07-25 A | HAL-C-ENV-F-202, HAL-P-ST-EN-110 | 100% | 2026-09-01 | 2026-09-07 | Plumber [80 h]; Construction Cost [26983.7] | 26,983.67 | 26,983.67 |  |  | 05 | 06 |  |  |  |
|  | 1 | **WATER SUPPLY SYSTEM** |  | 2026-05-05 | 2026-09-10 |  |  |  |  |  |  |  |  |  |  |  |  |  |  |
| HAL-C-ENV-WS-786 |  | Excavation for Water Suppy Works | 7d | 2026-05-05 A | 2026-08-03 A | HAL-C-ENV-F-212, HAL-E-SA-EX-690, HAL-E-SA-EX-710 | 100% | 2026-10-03 | 2026-10-11 | General Labour [112 h]; Equipment Operator [112 h]; Excavator [56 h]; Construction Cost [4191.31] | 4,191.31 | 4,191.31 |  |  | 05 | 06 |  |  | 1 |
| HAL-C-ENV-WS-746 |  | Installation of HDPE PN16 Pipes for Cold Water Supply | 10d | 2026-05-16 A | 2026-08-03 A | HAL-C-ENV-WS-786, HAL-P-ST-EN-120 | 100% | 2026-10-12 | 2026-10-24 | Pipe Fitter [160 h]; Construction Cost [62869.8] | 62,869.76 | 62,869.76 |  |  | 05 | 06 |  |  | 1 |
| HAL-C-ENV-WS-776 |  | Warning Tape | 2d | 2026-05-16 A | 2026-08-15 A | HAL-C-ENV-WS-846 SS | 100% | 2026-09-26 | 2026-09-28 | Plumber [32 h]; Construction Cost [4191.31] | 4,191.31 | 4,191.31 |  |  | 05 | 06 |  |  |  |
| HAL-C-ENV-WS-766 |  | Installation of Valves | 5d | 2026-06-17 A | 2026-08-15 A | HAL-C-ENV-WS-776, HAL-E-SA-EX-740, HAL-E-SA-EX-790, HAL-P-ST-EN-130, HAL-P-ST-EN-160 | 100% | 2026-10-19 | 2026-10-24 | Plumber [80 h]; Construction Cost [27204.8] | 27,204.85 | 27,204.85 |  |  | 05 | 06 |  |  |  |
| HAL-C-ENV-WS-796 |  | Backfilling for Water Supply | 14d | 2026-06-17 A | 2026-08-15 A | HAL-C-ENV-WS-766, HAL-C-ENV-F-222 | 100% | 2026-10-31 | 2026-11-15 | General Labour [224 h]; Equipment Operator [224 h]; Mini Roller Compactor [112 h]; Construction Cost [4191.31] | 4,191.31 | 4,191.31 |  |  | 05 | 06 |  |  |  |
| HAL-C-ENV-WS-846 |  | Construction of Air Valve Chamber | 7d | 2026-06-17 A | 2026-08-15 A | HAL-C-ENV-WS-806, HAL-E-SA-EX-750, HAL-E-SA-EX-760, HAL-E-SA-EX-780, HAL-E-SA-EX-830, HAL-E-SA-EX-840, HAL-P-ST-EN-140 | 100% | 2026-10-17 | 2026-10-24 | Mason [112 h]; Construction Cost [13270.7] | 13,270.66 | 13,270.66 |  |  | 05 | 06 |  |  |  |
| HAL-C-ENV-WS-826 |  | Supply and install Service connection -HDPE | 14d | 2026-08-03 A | 2026-09-10 A | HAL-C-ENV-WS-796, HAL-E-SA-EX-800 | 100% | 2026-10-04 | 2026-10-20 | Plumber [224 h]; Construction Cost [8294.16] | 8,294.16 | 8,294.16 |  |  | 05 | 06 |  |  |  |
| HAL-C-ENV-WS-806 |  | Construction of Washout Chamber | 7d | 2026-08-04 A | 2026-09-05 A | HAL-C-ENV-WS-746, HAL-E-SA-EX-770, HAL-E-SA-EX-810, HAL-E-SA-EX-820, HAL-P-ST-EN-150 | 100% | 2026-09-16 | 2026-09-26 | Mason [112 h]; Construction Cost [15482.4] | 15,482.44 | 15,482.44 |  |  | 05 | 06 |  |  |  |
|  | 9 | **SEWER & DRAINAGE SYSTEM** |  | 2026-05-16 | 2026-09-10 |  |  |  |  |  |  |  |  |  |  |  |  |  |  |
| HAL-C-ENV-SW-536 |  | Construction of Manhole | 7d | 2026-05-16 A | 2026-07-23 A | HAL-C-ENV-SW-486, HAL-E-SA-EX-730, HAL-E-SA-EX-900, HAL-E-SA-EX-910, HAL-E-SA-EX-920, HAL-E-SA-EX-930, HAL-E-SA-EX-940 | 100% | 2026-11-12 | 2026-11-21 | Mason [112 h]; Construction Cost [85153.4] | 85,153.4 | 85,153.4 |  |  | 05 | 06 |  |  | 1 |
| HAL-C-ENV-SW-486 |  | Installation of GRP Pipes for Sewer | 10d | 2026-05-23 A | 2026-08-04 A | HAL-C-ENV-SW-516, HAL-P-ST-EN-170 | 100% | 2026-09-03 | 2026-09-15 | Pipe Fitter [160 h]; Construction Cost [96194.5] | 96,194.46 | 96,194.46 |  |  | 05 | 06 |  |  | 1 |
| HAL-C-ENV-SW-516 |  | Excavation for Sewer Works | 7d | 2026-05-23 A | 2026-08-04 A | HAL-C-ENV-WS-746, HAL-E-SA-EX-850, HAL-E-SA-EX-860, HAL-E-SA-EX-870, HAL-E-SA-EX-880, HAL-E-SA-EX-890 | 100% | 2026-08-26 | 2026-09-03 | General Labour [112 h]; Equipment Operator [112 h]; Excavator [56 h]; Construction Cost [6012.35] | 6,012.35 | 6,012.35 |  |  | 05 | 06 |  |  | 1 |
| HAL-C-ENV-SW-526 |  | Backfilling for Sewer Drainage | 14d | 2026-06-17 A | 2026-08-04 A | HAL-C-ENV-SW-496 SS | 100% | 2026-09-02 | 2026-09-19 | General Labour [224 h]; Equipment Operator [224 h]; Mini Roller Compactor [112 h]; Construction Cost [6012.35] | 6,012.35 | 6,012.35 |  |  | 05 | 06 |  |  |  |
| HAL-C-ENV-SW-496 |  | Construction of inspection chambers | 7d | 2026-07-04 A | 2026-07-23 A | HAL-C-ENV-SW-536 | 100% | 2026-08-29 | 2026-09-06 | Mason [112 h]; Construction Cost [107824] | 107,824.11 | 107,824.11 |  |  | 05 | 06 |  |  |  |
| HAL-C-ENV-SW-506 |  | Gully trap | 10d | 2026-08-15 A | 2026-09-10 A | HAL-C-ENV-SW-526, HAL-P-ST-M-540 | 100% | 2026-09-27 | 2026-10-07 | Plumber [160 h]; Construction Cost [23223.7] | 23,223.65 | 23,223.65 |  |  | 05 | 06 |  |  |  |
| HAL-C-ENV-SW-546 |  | GRP pipe service connection | 7d | 2026-09-03 A | 2026-09-10 A | HAL-C-ENV-SW-506, HAL-C-ENV-WS-826 | 100% | 2026-10-21 | 2026-10-28 | Plumber [112 h]; Construction Cost [16588.3] | 16,588.33 | 16,588.33 |  |  | 05 | 06 |  |  |  |

| ID | WBS | Activity | Duration | Start | Finish | Predecessors | Complete | Planned start | Planned finish | Resources | Cost | Actual cost | Phasing Code Category | Discipline | Zone # | 00 Activity ID | AMH Tender Act. ID | Tender Original Duration |
| --- | --- | --- | --- | --- | --- | --- | --- | --- | --- | --- | --- | --- | --- | --- | --- | --- | --- | --- |
|  | 2 | **IRRIGATION SYSTEM** |  | 2026-06-17 | 2026-09-19 |  |  |  |  |  |  |  |  |  |  |  |  |  |
| HAL-C-ENV-SW-576 |  | Construction of Air valve chamber | 5d | 2026-06-17 A | 2026-08-05 A | HAL-C-ENV-SW-566, HAL-E-SA-EX-980, HAL-E-SA-EX-990, HAL-E-SA-EX-1010, HAL-E-SA-EX-1020, HAL-E-SA-EX-1030 | 100% | 2026-09-10 | 2026-09-16 | Mason [80 h]; Construction Cost [3096.48] | 3,096.48 | 3,096.48 | 05 | 06 |  |  |  |  |
| HAL-C-ENV-SW-556 |  | Excavation for HDPE pipes | 3d | 2026-09-15 A | 2026-09-16 A | HAL-C-ENV-SW-516 SS, HAL-E-SA-EX-950, HAL-E-SA-EX-960 | 100% | 2026-10-04 | 2026-10-06 | General Labour [112 h]; Equipment Operator [112 h]; Excavator [56 h]; Construction Cost [171.41] | 171.41 | 171.41 | 05 | 06 |  |  |  |  |
| HAL-C-ENV-SW-566 |  | Installation of HDPE Pipes | 5d | 2026-09-15 A | 2026-09-16 A | HAL-C-ENV-SW-556 | 100% | 2026-10-07 | 2026-10-12 | Pipe Fitter [160 h]; Construction Cost [2742.6] | 2,742.6 | 2,742.6 | 05 | 06 |  |  |  |  |
| HAL-C-ENV-SW-586 |  | Construction of Washout valve chamber | 5d | 2026-09-15 A | 2026-09-19 A | HAL-C-ENV-SW-576 SS, HAL-E-SA-EX-1000, HAL-E-SA-EX-1040, HAL-E-SA-EX-1050 | 100% | 2026-10-13 | 2026-10-18 | Mason [80 h]; Construction Cost [3594.13] | 3,594.13 | 3,594.13 | 05 | 06 |  |  |  |  |
| HAL-C-ENV-SW-596 |  | Backfilling for HDPE pipes | 7d | 2026-09-17 A | 2026-09-19 A | HAL-C-ENV-SW-586 | 100% | 2026-10-19 | 2026-10-26 | General Labour [224 h]; Equipment Operator [224 h]; Mini Roller Compactor [112 h]; Construction Cost [171.41] | 171.41 | 171.41 | 05 | 06 |  |  |  |  |
| HAL-C-ENV-SW-606 |  | Installation of valves | 5d | 2026-09-17 A | 2026-09-17 A | HAL-C-ENV-SW-596, HAL-E-SA-EX-970 | 100% | 2026-10-27 | 2026-11-01 | Plumber [80 h]; Construction Cost [31694.8] | 31,694.76 | 31,694.76 | 05 | 06 |  |  |  |  |
| HAL-C-ENV-SW-616 |  | Main program system and controller for irrigation system | 7d | 2026-09-17 A | 2026-09-19 A | HAL-C-ENV-SW-606, HAL-E-ST-E-0260 | 100% | 2026-11-02 | 2026-11-09 | Plumber [112 h]; Construction Cost [79624]; Electrician [112 h] | 79,623.96 | 79,623.96 | 05 | 06 |  |  |  |  |
|  | 3 | **EXTERNAL WORKS** |  | 2026-04-09 | 2026-11-02 |  |  |  |  |  |  |  |  |  |  |  |  |  |
|  | 1 | **MECHANICAL** |  | 2026-04-09 | 2026-10-08 |  |  |  |  |  |  |  |  |  |  |  |  |  |
| HAL-C-EX-M-1371 |  | Installation of GRP Tanks | 10d | 2026-05-13 A | 2026-06-06 A | HAL-P-ST-M-410, HAL-C-GRP-S-0108, HAL-E-SA-M-700, HAL-E-SA-M-710, HAL-E-SA-M-720, HAL-P-ST-M-410 FF | 100% | 2026-11-18 | 2026-11-30 | Pipe Fitter [160 h]; Plumber [160 h]; Construction Cost [282002] | 282,001.52 | 282,001.52 | 05 | 06 |  |  |  |  |
| HAL-C-EX-M-1381 |  | Valves for GRP Tank | 3d | 2026-06-08 A | 2026-06-13 A | HAL-C-EX-M-1371 | 100% | 2026-08-23 | 2026-08-26 | Plumber [48 h]; Construction Cost [37600.2] | 37,600.2 | 37,600.2 | 05 | 06 |  |  |  |  |
| HAL-C-EX-M-1391 |  | Access Ladder for GRP Tank | 2d | 2026-06-08 A | 2026-06-13 A | HAL-C-EX-M-1381 | 100% | 2026-08-26 | 2026-08-29 | Plumber [32 h]; Construction Cost [18800.1] | 18,800.1 | 18,800.1 | 05 | 06 |  |  |  |  |
| HAL-C-EX-M-1341 |  | Installation of Booster Pump | 5d | 2026-08-15 A | 2026-08-29 A | HAL-P-ST-M-400, HAL-C-PR-S-178 SS | 100% | 2026-09-21 | 2026-09-27 | Plumber [80 h]; Mobile Crane [40 h]; Equipment Operator [80 h]; Construction Cost [29029.6] | 29,029.57 | 29,029.57 | 05 | 06 | 1 |  |  |  |
| HAL-C-EX-M-1301 |  | Installation of Fire Fighting Pump | 4d | 2026-08-29 A | 2026-08-29 A | HAL-P-ST-M-380, HAL-C-EX-M-1341 | 100% | 2026-10-08 | 2026-10-13 | Pipe Fitter [64 h]; Equipment Operator [64 h]; Mobile Crane [32 h]; Construction Cost [298590] | 298,589.85 | 298,589.85 | 05 | 06 | 1 |  |  |  |
| HAL-C-EX-M-1351 |  | Valves for Water Supply Pump | 2d | 2026-08-29 A | 2026-08-30 A | HAL-C-EX-E-176 | 100% | 2026-10-08 | 2026-10-10 | Plumber [32 h]; Construction Cost [5805.91] | 5,805.91 | 5,805.91 | 05 | 06 |  |  |  |  |
| HAL-C-EX-M-1311 |  | CO2 fire extinguisher | 1d | 2026-10-07 A | 2026-10-08 A | HAL-C-EX-M-1301 | 100% | 2026-10-08 | 2026-10-08 | Plumber [16 h]; Construction Cost [193.53] | 193.53 | 193.53 | 05 | 06 | 1 |  |  |  |
| HAL-C-EX-M-1361 |  | Powder fire extinguisher | 1d | 2026-10-07 A | 2026-10-08 A | HAL-C-EX-M-1311 | 100% | 2026-10-10 | 2026-10-10 | Pipe Fitter [16 h]; Construction Cost [165.89] | 165.89 | 165.89 | 05 | 06 | 1 |  |  |  |
|  | 1 | **GRP Tank Foundation** |  | 2026-04-09 | 2026-05-24 |  |  |  |  |  |  |  |  |  |  |  |  |  |
| HAL-C-GRP-S-0101 |  | Excavation for Foundation | 4d | 2026-04-09 A | 2026-04-16 A | HAL-C-PR-S-108, HAL-E-SA-C-880, HAL-E-SA-R-930, HAL-E-SA-R-940 | 100% | 2026-10-08 | 2026-10-13 | General Labour [64 h]; Truck [32 h]; Excavator [32 h]; Mini Roller Compactor [32 h]; Construction Cost [4998.62] | 4,998.62 | 4,998.62 | 05 | 06 | 1 | H1.C.K1.00.SW.F.1010 | PH1-MHR-ST-640 | 12 |
| HAL-C-GRP-S-0102 |  | Vapour Barrier for Foundation | 2d | 2026-04-20 A | 2026-04-20 A | HAL-C-GRP-S-0101 | 100% | 2026-10-26 | 2026-10-28 | General Labour [32 h]; Construction Cost [4998.62] | 4,998.62 | 4,998.62 | 05 | 06 | 1 | H1.C.K1.00.SW.F.1040 | PH1-MHR-ST-1080 | 15 |
| HAL-C-GRP-S-0103 |  | Lean Concrete Below Foundation | 2d | 2026-04-20 A | 2026-04-20 A | HAL-C-GRP-S-0102 | 100% | 2026-10-28 | 2026-10-31 | Mason [32 h]; Construction Cost [9997.23] | 9,997.23 | 9,997.23 | 05 | 06 | 1 | H1.C.K1.00.SW.F.1030 | PH1-MHR-ST-1020 | 10 |
| HAL-C-GRP-S-0104 |  | Rebar for Foundation | 4d | 2026-04-22 A | 2026-04-27 A | HAL-C-GRP-S-0103 | 100% | 2026-10-31 | 2026-11-04 | Steel Fixer [64 h]; Construction Cost [19994.5] | 19,994.46 | 19,994.46 | 05 | 06 | 1 |  |  |  |
| HAL-C-GRP-S-0105 |  | Formwork for Foundation | 4d | 2026-04-22 A | 2026-04-30 A | HAL-C-GRP-S-0104 | 100% | 2026-11-04 | 2026-11-09 | Carperter [64 h]; Construction Cost [9997.23] | 9,997.23 | 9,997.23 | 05 | 06 | 1 |  |  |  |
| HAL-C-GRP-S-0106 |  | Pouring Concrete for Foundation | 1d | 2026-05-02 A | 2026-05-02 A | HAL-C-GRP-S-0105 | 100% | 2026-11-02 | 2026-11-03 | Carperter [16 h]; Mason [16 h]; Steel Fixer [16 h]; Concrete Mixer [8 h]; Construction Cost [34990.3] | 34,990.31 | 34,990.31 | 05 | 06 | 1 | H1.C.K1.00.RC.F.1010 | PH1-MHR-ST-1030 | 21 |
| HAL-C-GRP-S-0107 |  | Damp proof /Bitumin paint on Foundation | 2d | 2026-05-18 A | 2026-05-20 A | HAL-C-GRP-S-0106 | 100% | 2026-12-13 | 2026-12-15 | Painter [32 h]; Construction Cost [4998.62] | 4,998.62 | 4,998.62 | 05 | 06 | 1 | H1.C.K1.00.SW.F.1050 | PH1-MHR-ST-1080 | 15 |
| HAL-C-GRP-S-0108 |  | Backfilling / Compaction Around Foundation | 7d | 2026-05-21 A | 2026-05-24 A | HAL-C-GRP-S-0107 | 100% | 2026-08-23 | 2026-08-31 | General Labour [112 h]; Truck [56 h]; Mini Roller Compactor [56 h]; Wheel Loader [56 h]; Construction Cost [9997.23] | 9,997.23 | 9,997.23 | 05 | 06 | 1 | H1.C.K1.00.SW.F.1060 | PH1-MHR-ST-645 | 15 |

| ID | WBS | Activity | Duration | Start | Finish | Predecessors | Complete | Planned start | Planned finish | Resources | Cost | Actual cost | 00 Activity ID | AMH Tender Act. ID | Tender Original Duration | Zone # | Phasing Code Category | Discipline | Remarks |
| --- | --- | --- | --- | --- | --- | --- | --- | --- | --- | --- | --- | --- | --- | --- | --- | --- | --- | --- | --- |
|  | 2 | **Pump Shed** |  | 2026-05-02 | 2026-07-30 |  |  |  |  |  |  |  |  |  |  |  |  |  |  |
| HAL-C-PR-S-108 |  | Excavation for Footings | 4d | 2026-05-02 A | 2026-05-05 A | HAL-C-ENV-SW-486 SS, HAL-E-SA-C-890 | 100% | 2026-11-03 | 2026-11-08 | General Labour [64 h]; Truck [32 h]; Excavator [32 h]; Mini Roller Compactor [32 h]; Construction Cost [691.18] | 691.18 | 691.18 | H1.C.K1.00.SW.F.1010 | PH1-MHR-ST-640 | 12 | 1 | 05 | 06 |  |
| HAL-C-PR-S-138 |  | Lean Concrete Below Footings | 2d | 2026-05-07 A | 2026-05-07 A | HAL-C-PR-S-308 | 100% | 2026-11-10 | 2026-11-12 | Mason [32 h]; Construction Cost [691.18] | 691.18 | 691.18 | H1.C.K1.00.SW.F.1030 | PH1-MHR-ST-1020 | 10 | 1 | 05 | 06 |  |
| HAL-C-PR-S-198 |  | Rebar for Footings | 4d | 2026-05-07 A | 2026-05-11 A | HAL-C-PR-S-138 | 100% | 2026-11-12 | 2026-11-17 | Steel Fixer [64 h]; Construction Cost [1382.36] | 1,382.36 | 1,382.36 |  |  |  | 1 | 05 | 06 |  |
| HAL-C-PR-S-208 |  | Formwork for Footings | 4d | 2026-05-07 A | 2026-05-12 A | HAL-C-PR-S-198 | 100% | 2026-11-17 | 2026-11-22 | Carperter [64 h]; Construction Cost [691.18] | 691.18 | 691.18 |  |  |  | 1 | 05 | 06 |  |
| HAL-C-PR-S-308 |  | Vapour Barrier for Footings | 2d | 2026-05-07 A | 2026-05-07 A | HAL-C-PR-S-108 | 100% | 2026-11-08 | 2026-11-10 | General Labour [32 h]; Construction Cost [691.18] | 691.18 | 691.18 | H1.C.K1.00.SW.F.1040 | PH1-MHR-ST-1080 | 15 | 1 | 05 | 06 |  |
| HAL-C-PR-S-148 |  | Pouring Concrete for Footings | 1d | 2026-05-16 A | 2026-05-16 A | HAL-C-PR-S-208 | 100% | 2026-11-01 | 2026-11-02 | Carperter [16 h]; Mason [16 h]; Steel Fixer [16 h]; Concrete Mixer [8 h]; Construction Cost [6911.8] | 6,911.8 | 6,911.8 | H1.C.K1.00.RC.F.1010 | PH1-MHR-ST-1030 | 21 | 1 | 05 | 06 |  |
| HAL-C-PR-S-298 |  | Damp proof /Bitumin paint on Footing Sides | 2d | 2026-05-18 A | 2026-05-20 A | HAL-C-PR-S-148 | 100% | 2026-12-13 | 2026-12-15 | Painter [32 h]; Construction Cost [691.18] | 691.18 | 691.18 | H1.C.K1.00.SW.F.1050 | PH1-MHR-ST-1080 | 15 | 1 | 05 | 06 |  |
| HAL-C-PR-S-378 |  | Backfilling / Compaction Around Footings to Bottom of Grade Beams | 5d | 2026-05-21 A | 2026-05-31 A | HAL-C-PR-S-298 | 100% | 2026-08-23 | 2026-08-29 | General Labour [80 h]; Truck [40 h]; Mini Roller Compactor [40 h]; Wheel Loader [40 h]; Construction Cost [1382.36] | 1,382.36 | 1,382.36 | H1.C.K1.00.SW.F.1060 | PH1-MHR-ST-645 | 15 | 1 | 05 | 06 |  |
| HAL-C-PR-S-158 |  | Lean Concrete Below Grade Beams | 2d | 2026-06-01 A | 2026-06-01 A | HAL-C-PR-S-328 | 100% | 2026-08-31 | 2026-09-02 | Mason [32 h]; Construction Cost [691.18] | 691.18 | 691.18 | H1.C.K1.00.SW.F.1130 | PH1-MHR-ST-1020 | 10 | 1 | 05 | 06 |  |
| HAL-C-PR-S-328 |  | Vapour barrier for Grade Beams | 2d | 2026-06-01 A | 2026-06-01 A | HAL-C-PR-S-378 | 100% | 2026-08-29 | 2026-08-31 | General Labour [32 h]; Construction Cost [691.18] | 691.18 | 691.18 | H1.C.K1.00.SW.F.1040 | PH1-MHR-ST-1080 | 15 | 1 | 05 | 06 |  |
| HAL-C-PR-S-218 |  | Rebar for Grade Beams | 2d | 2026-06-02 A | 2026-06-04 A | HAL-C-PR-S-158 | 100% | 2026-09-02 | 2026-09-05 | Steel Fixer [32 h]; Construction Cost [1382.36] | 1,382.36 | 1,382.36 |  |  |  | 1 | 05 | 06 |  |
| HAL-C-PR-S-188 |  | Pedestal including anchor bolts | 1d | 2026-06-04 A | 2026-06-06 A | HAL-C-PR-S-228 SS | 100% | 2026-09-05 | 2026-09-06 | Mason [16 h]; Structural Steel Fixer [16 h]; Construction Cost [691.18] | 691.18 | 691.18 |  |  |  | 1 | 05 | 06 |  |
| HAL-C-PR-S-228 |  | Formwork for Grade Beams | 2d | 2026-06-04 A | 2026-06-06 A | HAL-C-PR-S-218 | 100% | 2026-09-05 | 2026-09-07 | Carperter [32 h]; Construction Cost [691.18] | 691.18 | 691.18 |  |  |  | 1 | 05 | 06 |  |
| HAL-C-PR-S-168 |  | Pouring Concrete for Grade Beams | 1d | 2026-06-06 A | 2026-06-06 A | HAL-C-PR-S-228 | 100% | 2026-09-07 | 2026-09-08 | Mason [16 h]; Carperter [16 h]; Concrete Mixer [8 h]; Steel Fixer [16 h]; Construction Cost [3455.9] | 3,455.9 | 3,455.9 | H1.C.K1.00.RC.F.1110 | PH1-MHR-ST-1030 | 21 | 1 | 05 | 06 |  |
| HAL-C-PR-S-338 |  | Damp proof /Bitumin paint on Grade Beams | 2d | 2026-06-13 A | 2026-06-14 A | HAL-C-PR-S-168, HAL-C-PR-S-188 | 100% | 2026-08-23 | 2026-08-25 | Painter [32 h]; Construction Cost [691.18] | 691.18 | 691.18 | H1.C.K1.00.SW.F.1050 | PH1-MHR-ST-1080 | 15 | 1 | 05 | 06 |  |
| HAL-C-PR-S-288 |  | Concrete Pad | 5d | 2026-06-17 A | 2026-06-20 A | HAL-C-PR-S-178 | 100% | 2026-09-13 | 2026-09-19 | Mason [80 h]; Construction Cost [1382.36] | 1,382.36 | 1,382.36 |  |  |  |  | 05 | 06 |  |
| HAL-C-PR-S-388 |  | Backfilling / Compaction for Slab on Grade | 5d | 2026-06-29 A | 2026-07-02 A | HAL-C-PR-S-338 | 100% | 2026-08-22 | 2026-08-27 | Mini Roller Compactor [40 h]; General Labour [80 h]; Wheel Loader [40 h]; Construction Cost [1382.36] | 1,382.36 | 1,382.36 |  |  |  | 1 | 05 | 06 |  |
| HAL-C-PR-S-128 |  | Installation of Columns | 3d | 2026-07-07 A | 2026-07-07 A | HAL-C-PR-S-188, HAL-C-PR-S-288 | 100% | 2026-09-06 | 2026-09-09 | Structural Steel Fixer [48 h]; Mobile Crane [24 h]; Construction Cost [8985.34] | 8,985.34 | 8,985.34 |  |  |  |  | 05 | 06 | 3 |
| HAL-C-PR-S-358 |  | Installation of Raft & Purlins | 4d | 2026-07-08 A | 2026-07-08 A | HAL-C-PR-S-128 | 100% | 2026-09-09 | 2026-09-14 | Structural Steel Fixer [64 h]; Mobile Crane [32 h]; Construction Cost [13823.6] | 13,823.61 | 13,823.61 |  |  |  |  | 05 | 06 | 3 |
| HAL-C-PR-S-368 |  | Installation of Roof Sheet | 2d | 2026-07-11 A | 2026-07-30 A | HAL-C-PR-S-358 SS | 100% | 2026-09-09 | 2026-09-12 | Structural Steel Fixer [32 h]; Mobile Crane [16 h]; Construction Cost [20735.4] | 20,735.41 | 20,735.41 |  |  |  |  | 05 | 06 | 3 |
| HAL-C-PR-S-268 |  | Rebar for Ground Slab | 4d | 2026-07-15 A | 2026-07-16 A | HAL-C-PR-S-348 | 100% | 2026-09-01 | 2026-09-06 | Steel Fixer [64 h]; Construction Cost [13735.1] | 13,735.14 | 13,735.14 |  |  |  | 1 | 05 | 06 |  |
| HAL-C-PR-S-318 |  | Anti Termite Treatment below Ground Slab | 1d | 2026-07-15 A | 2026-07-15 A | HAL-C-PR-S-388 | 100% | 2026-08-29 | 2026-08-30 | General Labour [16 h]; Construction Cost [691.18] | 691.18 | 691.18 | H1.C.A1.06.SW.F.1220 | PH1-MHR-ST-645 | 15 | 1 | 05 | 06 |  |
| HAL-C-PR-S-348 |  | Vapour barrier for below Ground Slab | 2d | 2026-07-15 A | 2026-07-15 A | HAL-C-PR-S-318 | 100% | 2026-08-30 | 2026-09-01 | General Labour [32 h]; Construction Cost [691.18] | 691.18 | 691.18 |  |  |  | 1 | 05 | 06 |  |
| HAL-C-PR-S-278 |  | Formwork for Ground Slab | 4d | 2026-07-16 A | 2026-07-16 A | HAL-C-PR-S-268, HAL-C-PR-S-268 FF, HAL-C-EX-M-1391 | 100% | 2026-09-06 | 2026-09-10 | Carperter [64 h]; Construction Cost [3433.78] | 3,433.78 | 3,433.78 |  |  |  | 1 | 05 | 06 |  |
| HAL-C-PR-S-178 |  | Pouring Concrete for Ground Slab | 1d | 2026-07-18 A | 2026-07-18 A | HAL-C-PR-S-278 | 100% | 2026-08-29 | 2026-08-30 | Mason [16 h]; Carperter [16 h]; Steel Fixer [16 h]; Concrete Mixer [8 h]; Construction Cost [17168.9] | 17,168.92 | 17,168.92 | H1.C.A1.06.RC.G.1210 | PH1-MHR-ST-496 | 24 | 1 | 05 | 06 |  |

| ID | WBS | Activity | Duration | Start | Finish | Predecessors | Complete | Remaining | Planned start | Planned finish | Total float | Free float | Resources | Cost | Actual cost | 00 Activity ID | Zone # | Phasing Code Category | Discipline | AMH Tender Act. ID | Tender Original Duration |
| --- | --- | --- | --- | --- | --- | --- | --- | --- | --- | --- | --- | --- | --- | --- | --- | --- | --- | --- | --- | --- | --- |
|  | 6 | **ELECTRICAL** |  | 2026-07-25 | 2026-10-27 |  |  |  |  |  |  |  |  |  |  |  |  |  |  |  |  |
| HAL-C-EX-E-186 |  | Installation of Earthing and Grounding | 5d | 2026-07-25 A | 2026-10-27 | HAL-C-EX-E-176, HAL-E-SA-E-1160 | 70% | 1.5d | 2026-09-08 | 2026-09-14 | 5.5d | 0d | Electrician [80 h]; Construction Cost [1219.55] | 1,219.55 | 853.68 | H1.C.K1.00.EM.G.2040 | 1 | 05 | 06 |  |  |
| HAL-C-EX-E-206 |  | Installation of Conduites for Lighting Fixture | 4d | 2026-08-19 A | 2026-10-01 A | HAL-C-EX-E-186, HAL-E-SA-E-1130, HAL-E-SA-E-1140, HAL-E-SA-E-1170 | 100% |  | 2026-10-06 | 2026-10-10 |  |  | Electrician [64 h]; Construction Cost [353.88] | 353.88 | 353.88 | H1.C.K1.00.EM.G.2030 | 1 | 05 | 06 |  |  |
| HAL-C-EX-E-1341 |  | Installation of Cable tray | 2d | 2026-09-05 A | 2026-10-01 A | HAL-C-EX-E-236 SS, HAL-P-ST-E-2100 | 100% |  | 2026-09-30 | 2026-10-01 |  |  | Electrician [80 h]; Construction Cost [1603.54] | 1,603.54 | 1,603.54 |  |  | 05 | 06 |  |  |
| HAL-C-EX-E-1331 |  | Installation of Programmable Logis Controller | 1d | 2026-09-15 A | 2026-09-19 A | HAL-C-EX-E-196 SS, HAL-E-SA-E-1180, HAL-E-ST-E-0270 | 100% |  | 2026-10-13 | 2026-10-13 |  |  | Electrician [112 h]; Construction Cost [159248] | 159,247.92 | 159,247.92 | H1.C.K1.00.EM.G.3010 | 1 | 05 | 06 |  |  |
| HAL-C-EX-E-1321 |  | Installation of wiring devices | 2d | 2026-09-24 A | 2026-10-12 A | HAL-C-EX-M-1301 SS, HAL-C-EX-M-1361 SS | 100% |  | 2026-10-11 | 2026-10-12 |  |  | Electrician [80 h]; Construction Cost [3826.99] | 3,826.99 | 3,826.99 |  | 1 | 05 | 06 |  |  |
| HAL-C-EX-E-176 |  | Installation of Main MCC | 2d | 2026-09-24 A | 2026-10-12 A | HAL-C-EX-M-1341 SS | 100% |  | 2026-10-10 | 2026-10-11 |  |  | Electrician [32 h]; Construction Cost [12828.3] | 12,828.3 | 12,828.3 |  | 1 | 05 | 06 |  |  |
| HAL-C-EX-E-196 |  | Installation of Lighting fixtures | 2d | 2026-09-24 A | 2026-10-12 A | HAL-C-EX-E-226, HAL-C-EX-M-1351, HAL-E-SA-E-1150, HAL-P-ST-E-280 | 100% |  | 2026-10-19 | 2026-10-20 |  |  | Electrician [32 h]; Construction Cost [5310.11] | 5,310.11 | 5,310.11 | H1.C.K1.00.EM.G.3010 | 1 | 05 | 06 |  |  |
| HAL-C-EX-E-216 |  | Installation of LV Cables | 2d | 2026-09-24 A | 2026-10-12 A | HAL-C-EX-E-176 SS, HAL-C-EX-E-1341 SS | 100% |  | 2026-10-10 | 2026-10-11 |  |  | Electrician [80 h]; Construction Cost [2281.82] | 2,281.82 | 2,281.82 |  |  | 05 | 06 |  |  |
| HAL-C-EX-E-236 |  | Installation of panel boards | 2d | 2026-09-24 A | 2026-10-12 A | HAL-C-EX-M-1301, HAL-P-ST-E-270 | 100% |  | 2026-10-10 | 2026-10-11 |  |  | Electrician [32 h]; Construction Cost [5175.56] | 5,175.56 | 5,175.56 |  | 1 | 05 | 06 |  |  |
| HAL-C-EX-E-226 |  | Installation of Wires | 2d | 2026-10-10 A | 2026-10-12 A | HAL-C-EX-E-206 SS | 100% |  | 2026-10-15 | 2026-10-18 |  |  | Electrician [32 h]; Construction Cost [707.77] | 707.77 | 707.77 |  |  | 05 | 06 |  |  |
|  | 4 | **EXTERNAL ELECTRICAL WORKS** |  | 2026-08-01 | 2026-11-02 |  |  |  |  |  |  |  |  |  |  |  |  |  |  |  |  |
| HAL-C-EX-E-450 |  | Foundation for Lighting poles | 5d | 2026-08-01 A | 2026-09-09 A | HAL-C-EX-E-390 | 100% |  | 2026-09-22 | 2026-09-28 |  |  | Excavator [40 h]; Electrician [80 h]; Construction Cost [13176] | 13,176.04 | 13,176.04 |  | 1 | 05 | 06 |  |  |
| HAL-C-EX-E-460 |  | Electrical Manhole | 7d | 2026-08-01 A | 2026-09-05 A | HAL-C-EX-E-380 | 100% |  | 2026-10-21 | 2026-10-28 |  |  | Electrician [112 h]; Construction Cost [111551] | 111,550.95 | 111,550.95 |  | 1 | 05 | 06 |  |  |
| HAL-C-EX-E-410 |  | Construction of Concrete encased duct bank | 10d | 2026-08-25 A | 2026-09-24 A | HAL-C-EX-E-400, HAL-C-EX-E-400 FF | 100% |  | 2026-09-07 | 2026-09-17 |  |  | Electrician [160 h]; Construction Cost [269888] | 269,887.75 | 269,887.75 |  |  | 05 | 06 |  |  |
| HAL-C-EX-E-390 |  | Installation of Telecom manhole | 10d | 2026-09-02 A | 2026-09-09 A | HAL-C-EX-E-420 | 100% |  | 2026-09-14 | 2026-09-27 |  |  | Electrician [160 h]; Construction Cost [54888.3] | 54,888.31 | 54,888.31 |  |  | 05 | 06 |  |  |
| HAL-C-EX-E-400 |  | Installation of UPVC Pipe | 5d | 2026-09-02 A | 2026-09-24 A | HAL-C-B-A-620 | 100% |  | 2026-09-02 | 2026-09-07 |  |  | Electrician [80 h]; Construction Cost [67472.1] | 67,472.09 | 67,472.09 |  |  | 05 | 06 |  |  |
| HAL-C-EX-E-420 |  | Installation of Sleeves for lighting poles | 5d | 2026-09-05 A | 2026-09-08 A | HAL-C-EX-E-410 | 100% |  | 2026-09-15 | 2026-09-20 |  |  | Electrician [80 h]; Construction Cost [6588.03] | 6,588.03 | 6,588.03 |  |  | 05 | 06 |  |  |
| HAL-C-EX-E-470 |  | Installation of Earthing and Grounding | 5d | 2026-09-10 A | 2026-10-28 | HAL-C-EX-E-460 | 50% | 2.5d | 2026-10-20 | 2026-10-26 | 0.5d | 0d | Electrician [80 h]; Construction Cost [9726.29] | 9,726.29 | 4,863.14 | H1.C.K1.00.EM.G.2040 | 1 | 05 | 06 |  |  |
| HAL-C-EX-E-480 |  | Installation of Street Lighting Feeder pillars & KWH meter | 5d | 2026-09-10 A | 2026-11-02 | HAL-C-EX-E-470 | 20% | 4d | 2026-10-26 | 2026-11-01 | 0.5d | 0d | Electrician [80 h]; Construction Cost [105502] | 105,501.74 | 21,100.35 |  |  | 05 | 06 |  |  |
| HAL-C-EX-E-440 |  | Installation of Lighting poles | 7d | 2026-09-24 A | 2026-10-12 A | HAL-C-EX-E-450, HAL-P-ST-E-260, HAL-C-TC-ENV-F-1051 | 100% |  | 2026-10-11 | 2026-10-19 |  |  | Mobile Crane [56 h]; Excavator [56 h]; Electrician [112 h]; Construction Cost [72468.9] | 72,468.86 | 72,468.86 |  | 1 | 05 | 06 |  |  |
| HAL-C-EX-E-380 |  | Installation of LV Cables | 7d | 2026-10-01 A | 2026-10-12 A | HAL-C-EX-E-430 | 100% |  | 2026-10-14 | 2026-10-22 |  |  | Electrician [112 h]; Construction Cost [49118] | 49,118.03 | 49,118.03 |  |  | 05 | 06 |  |  |
| HAL-C-EX-E-430 |  | Installation of Lighting Fixture | 5d | 2026-10-01 A | 2026-10-03 A | HAL-C-EX-E-440 | 100% |  | 2026-10-08 | 2026-10-14 |  |  | Mobile Crane [40 h]; Electrician [80 h]; Construction Cost [26352.1] | 26,352.09 | 26,352.09 |  | 1 | 05 | 06 |  |  |
|  | 3 | **FENCES AND GATES** |  | 2026-08-22 | 2026-11-02 |  |  |  |  |  |  |  |  |  |  |  |  |  |  |  |  |
| HAL-C-EX-S-1374 |  | Excavation for Fence | 7d | 2026-08-22 A | 2026-08-24 A | HAL-C-EX-E-400 | 100% |  | 2026-09-08 | 2026-09-16 |  |  | General Labour [112 h]; Equipment Operator [112 h]; Truck [56 h]; Excavator [56 h]; Mini Roller Compactor [56 h]; Construction Cost [460.17] | 460.17 | 460.17 | H1.C.K1.00.SW.F.1010 | 1 | 05 | 06 | PH1-MHR-ST-640 | 12 |
| HAL-C-EX-S-1274 |  | Lean Concrete Below Fence | 4d | 2026-08-24 A | 2026-08-25 A | HAL-C-EX-S-1354 | 100% |  | 2026-09-21 | 2026-09-27 |  |  | Mason [64 h]; Construction Cost [460.17] | 460.17 | 460.17 | H1.C.K1.00.SW.F.1030 | 1 | 05 | 06 | PH1-MHR-ST-1020 | 10 |
| HAL-C-EX-S-1354 |  | Vapour Barrier for Fence | 4d | 2026-08-24 A | 2026-08-25 A | HAL-C-EX-S-1374 | 100% |  | 2026-09-16 | 2026-09-21 |  |  | General Labour [64 h]; Construction Cost [230.39] | 230.39 | 230.39 | H1.C.K1.00.SW.F.1040 | 1 | 05 | 06 | PH1-MHR-ST-1080 | 15 |
| HAL-C-EX-S-1314 |  | Formwork for Footings | 4d | 2026-08-25 A | 2026-08-25 A | HAL-C-EX-S-1304 | 100% |  | 2026-10-05 | 2026-10-10 |  |  | Carperter [64 h]; Construction Cost [460.17] | 460.17 | 460.17 |  | 1 | 05 | 06 |  |  |
| HAL-C-EX-S-1304 |  | Rebar for Footings | 7d | 2026-08-26 A | 2026-08-26 A | HAL-C-EX-S-1274 | 100% |  | 2026-09-27 | 2026-10-05 |  |  | Steel Fixer [112 h]; Construction Cost [920.96] | 920.96 | 920.96 |  | 1 | 05 | 06 |  |  |
| HAL-C-EX-S-1284 |  | Pouring Concrete for Footings | 2d | 2026-08-27 A | 2026-08-27 A | HAL-C-EX-S-1314 | 100% |  | 2026-10-10 | 2026-10-12 |  |  | Carperter [32 h]; Mason [32 h]; Steel Fixer [32 h]; Concrete Mixer [16 h]; Equipment Operator [32 h]; Construction Cost [1381.13] | 1,381.13 | 1,381.13 | H1.C.K1.00.RC.F.1010 | 1 | 05 | 06 | PH1-MHR-ST-1030 | 21 |
| HAL-C-EX-S-1344 |  | Damp proof /Bitumin paint on Footing Sides | 2d | 2026-08-29 A | 2026-08-29 A | HAL-C-EX-S-1284 | 100% |  | 2026-10-12 | 2026-10-14 |  |  | Painter [32 h]; Construction Cost [230.39] | 230.39 | 230.39 | H1.C.K1.00.SW.F.1050 | 1 | 05 | 06 | PH1-MHR-ST-1080 | 15 |
| HAL-C-EX-S-1364 |  | Backfilling / Compaction Around Footings | 7d | 2026-08-30 A | 2026-08-31 A | HAL-C-EX-S-1344 | 100% |  | 2026-10-14 | 2026-10-22 |  |  | General Labour [112 h]; Truck [56 h]; Mini Roller Compactor [56 h]; Equipment Operator [112 h]; Wheel Loader [56 h]; Construction Cost [460.17] | 460.17 | 460.17 | H1.C.K1.00.SW.F.1060 | 1 | 05 | 06 | PH1-MHR-ST-645 | 15 |
| HAL-C-EX-S-1334 |  | Installation of base plate | 2d | 2026-10-26 | 2026-10-27 | HAL-C-EX-S-1364, HAL-E-ST-A-1750 |  |  |  |  | 1d | 0d | Carperter [80 h]; Construction Cost [920.96] | 920.96 |  |  | 1 | 05 | 06 |  |  |
| HAL-C-EX-S-1294 |  | Installation of steel fence | 2d | 2026-10-28 | 2026-10-29 | HAL-C-EX-S-1324 SS |  |  |  |  | 1d | 0d | Mason [32 h]; Carperter [32 h]; Concrete Mixer [16 h]; Steel Fixer [32 h]; Equipment Operator [32 h]; Construction Cost [1841.3] | 1,841.3 |  | H1.C.K1.00.RC.F.1110 | 1 | 05 | 06 | PH1-MHR-ST-1030 | 21 |
| HAL-C-EX-S-1324 |  | Installation of steel members | 5d | 2026-10-28 | 2026-11-02 | HAL-C-EX-S-1334 |  |  |  |  | 1d | 0d | Steel Fixer [112 h]; Construction Cost [1841.3] | 1,841.3 |  |  | 1 | 05 | 06 |  |  |
| HAL-C-EX-S-1384 |  | Installation of steel gates | 2d | 2026-10-31 | 2026-11-01 | HAL-C-EX-S-1294 |  |  |  |  | 1d | 0.5d | Mason [32 h]; Carperter [32 h]; Concrete Mixer [16 h]; Steel Fixer [32 h]; Equipment Operator [32 h]; Construction Cost [2045.89] | 2,045.89 |  | H1.C.K1.00.RC.F.1110 | 1 | 05 | 06 | PH1-MHR-ST-1030 | 21 |

| ID | WBS | Activity | Duration | Start | Finish | Predecessors | Complete | Remaining | Planned start | Planned finish | Total float | Free float | Resources | Cost | Actual cost | Zone # | Phasing Code Category | Discipline | Remarks |
| --- | --- | --- | --- | --- | --- | --- | --- | --- | --- | --- | --- | --- | --- | --- | --- | --- | --- | --- | --- |
|  | 2 | **ROAD WORKS** |  | 2026-07-25 | 2026-10-31 |  |  |  |  |  |  |  |  |  |  |  |  |  |  |
| HAL-C-EX-R-1390 |  | SubGrade Preparation & Compaction | 7d | 2026-07-25 A | 2026-09-09 A | HAL-E-MT-EX-2050, HAL-C-EX-E-410 | 100% |  | 2026-08-25 | 2026-09-01 |  |  | General Labour [112 h]; Equipment Operator [112 h]; Motor Grader [56 h]; Roller Compactor [56 h]; Construction Cost [156634] | 156,633.73 | 156,633.73 | 1 | 05 | 06 |  |
| HAL-C-EX-R-1400 |  | Aggregate Base Course Layer | 2d | 2026-09-09 A | 2026-09-24 A | HAL-E-SA-R-840, HAL-P-ST-EX-80, HAL-C-EX-R-1390 | 100% |  | 2026-09-19 | 2026-09-20 |  |  | General Labour [32 h]; Mini Roller Compactor [16 h]; Equipment Operator [32 h]; Construction Cost [134468] | 134,468.03 | 134,468.03 | 1 | 05 | 06 |  |
| HAL-C-EX-R-1460 |  | Curb Stones | 7d | 2026-09-19 A | 2026-10-22 A | HAL-E-SA-R-790, HAL-E-SA-R-800, HAL-E-SA-R-810, HAL-E-SA-R-820, HAL-E-SA-R-850, HAL-P-ST-EX-140, HAL-C-EX-R-1400 SS | 100% |  | 2026-09-30 | 2026-10-07 |  |  | Mason [224 h]; Construction Cost [131462] | 131,462.47 | 131,462.47 |  | 05 | 06 |  |
| HAL-C-EX-R-1480 |  | Interlock Tiles | 7d | 2026-09-24 A | 2026-10-25 A | HAL-C-EX-R-1460 SS, HAL-P-ST-EX-130 | 100% |  | 2026-10-06 | 2026-10-13 |  |  | Mason [224 h]; Construction Cost [195148] | 195,148.13 | 195,148.13 |  | 05 | 06 |  |
| HAL-C-EX-R-1500 |  | Road Signs | 5d | 2026-09-24 A | 2026-10-25 A | HAL-C-EX-R-1490, HAL-E-SA-R-860, HAL-P-ST-EX-110 | 100% |  | 2026-10-19 | 2026-10-24 |  |  | Mason [80 h]; Construction Cost [50047] | 50,046.98 | 50,046.98 |  | 05 | 06 |  |
| HAL-C-EX-R-1410 |  | Asphalt Concrete Base Course Layer | 2d | 2026-10-11 A | 2026-10-31 A | HAL-C-EX-R-1450 SS+1d | 100% |  | 2026-10-21 | 2026-10-24 |  |  | General Labour [32 h]; Paver [16 h]; Equipment Operator [32 h]; Construction Cost [313833] | 313,832.68 | 313,832.68 | 1 | 05 | 06 |  |
| HAL-C-EX-R-1450 |  | Prime Coat | 1d | 2026-10-11 A | 2026-10-12 A | HAL-C-EX-R-1500 | 100% |  | 2026-10-20 | 2026-10-21 |  |  | General Labour [16 h]; Construction Cost [34870.5] | 34,870.5 | 34,870.5 |  | 05 | 06 |  |
| HAL-C-EX-R-1470 |  | Tack Coat | 1d | 2026-10-17 A | 2026-10-26 | HAL-C-EX-R-1410 | 90% | 0.1d | 2026-10-31 | 2026-11-01 | 4.7d | 0d | General Labour [16 h]; Construction Cost [25698.4] | 25,698.39 | 23,128.55 |  | 05 | 06 |  |
| HAL-C-EX-R-1420 |  | Asphalt Concrete Wearing Course Layer | 2d | 2026-10-18 A | 2026-10-26 | HAL-C-EX-R-1470 | 90% | 0.2d | 2026-11-01 | 2026-11-03 | 4.7d | 0d | General Labour [32 h]; Paver [16 h]; Equipment Operator [32 h]; Construction Cost [231283] | 231,283.03 | 208,154.73 | 1 | 05 | 06 |  |
| HAL-C-EX-R-890 |  | Supply and install geotextile sheet | 2d | 2026-10-22 A | 2026-10-22 A | HAL-C-EX-R-1480 SS | 100% |  | 2026-10-26 | 2026-10-27 |  |  | General Labour [32 h]; Construction Cost [12773] | 12,773.01 | 12,773.01 |  | 05 | 06 |  |
| HAL-C-EX-R-1490 |  | Gravel Bedding | 2d | 2026-10-24 A | 2026-10-25 A | HAL-E-SA-R-880, HAL-E-SA-R-890, HAL-E-SA-R-910, HAL-C-EX-R-890 | 100% |  | 2026-10-28 | 2026-10-29 |  |  | General Labour [32 h]; Mini Roller Compactor [16 h]; Truck [16 h]; Construction Cost [17666.6] | 17,666.57 | 17,666.57 | 1 | 05 | 06 |  |
| HAL-C-EX-R-1430 |  | Retroreflective Thermoplastic White Traffic lines | 2d | 2026-10-26 | 2026-10-28 | HAL-C-EX-R-1420, HAL-E-SA-R-830, HAL-E-SA-R-870, HAL-P-ST-EX-100 |  |  |  |  | 4.7d | 0d | General Labour [32 h]; Construction Cost [36190.2] | 36,190.19 |  | 1 | 05 | 06 |  |
| HAL-C-EX-R-1440 |  | Installation of Concrete wheel bumper | 2d | 2026-10-26 | 2026-10-28 | HAL-C-EX-R-1430 SS, HAL-P-ST-EX-90 |  |  |  |  | 4.7d | 0d | Mason [64 h]; Construction Cost [14531.4] | 14,531.37 |  | 1 | 05 | 06 |  |
|  | 5 | **LANDSCAPING** |  | 2026-10-26 | 2026-11-01 |  |  |  |  |  |  |  |  |  |  |  |  |  |  |
| HAL-C-EX-R-1510 |  | Planting of trees | 3d | 2026-10-26 | 2026-10-28 | HAL-C-EX-R-1490 SS, HAL-E-SA-R-900, HAL-E-SA-R-920, HAL-E-SA-R-950, HAL-E-SA-R-960 |  |  |  |  | 1d | 0d | General Labour [80 h]; Mini Roller Compactor [40 h]; Truck [40 h]; Construction Cost [22117.8] | 22,117.76 |  | 1 | 05 | 06 |  |
| HAL-C-EX-R-1520 |  | Planting of shrubs | 3d | 2026-10-29 | 2026-11-01 | HAL-C-EX-R-1510 |  |  |  |  | 1d | 0.5d | General Labour [112 h]; Mini Roller Compactor [56 h]; Truck [56 h]; Construction Cost [25399.9] | 25,399.9 |  | 1 | 05 | 06 |  |
|  | 6 | **TESTING AND COMMISSIONING (10%)** |  | 2026-04-25 | 2026-10-26 |  |  |  |  |  |  |  |  |  |  |  |  |  |  |
|  | 3 | **TESTING AND COMMISSIONING 900 Sq.m-2** |  | 2026-04-25 | 2026-10-26 |  |  |  |  |  |  |  |  |  |  |  |  |  |  |
|  | 1 | **MECHANICAL** |  | 2026-04-25 | 2026-10-25 |  |  |  |  |  |  |  |  |  |  |  |  |  |  |
| HAL-C-TC-M-3406 |  | Testing & Commissioning of Sewer & Drainage Pipes | 7d | 2026-04-25 A | 2026-09-24 A | HAL-C-B-M-510, HAL-C-C-M-1130, HAL-C-A-M-820, HAL-C-D-M-820, HAL-C-E-M-200 | 100% |  | 2026-06-30 | 2026-07-08 |  |  | Plumber [112 h]; Construction Cost [12987] | 12,987 | 12,987 |  | 06 | 03 | 1 |
| HAL-C-TC-M-3436 |  | Testing and Commissioning of HVAC Duct | 2d | 2026-07-21 A | 2026-09-24 A | HAL-C-B-M-450, HAL-C-C-M-1070, HAL-C-A-M-760, HAL-C-D-M-760, HAL-C-E-M-140, HAL-C-TC-M-3416 | 100% |  | 2026-10-31 | 2026-11-02 |  |  | AC Technician [112 h]; Construction Cost [127935] | 127,935 | 127,935 |  | 06 | 03 |  |
| HAL-C-TC-M-3376 |  | Testing and Commissioning of Fire Fighting Pipes | 7d | 2026-09-08 A | 2026-10-25 A | HAL-C-B-M-610, HAL-C-C-M-1230, HAL-C-A-M-920, HAL-C-D-M-920, HAL-C-E-M-300 | 100% |  | 2026-11-03 | 2026-11-11 |  |  | Pipe Fitter [112 h]; Construction Cost [54639.9] | 54,639.9 | 54,639.9 |  | 06 | 03 |  |
| HAL-C-TC-M-3396 |  | Testing & Commissioning of Water Supply Pipes | 7d | 2026-09-08 A | 2026-09-24 A | HAL-C-B-M-600, HAL-C-C-M-1220, HAL-C-A-M-910, HAL-C-D-M-910, HAL-C-E-M-290 | 100% |  | 2026-11-04 | 2026-11-12 |  |  | Plumber [112 h]; Construction Cost [17651.2] | 17,651.25 | 17,651.25 |  | 06 | 03 |  |
| HAL-C-TC-M-3416 |  | Testing and Commissioning of Electric Water Heater | 7d | 2026-09-15 A | 2026-10-25 A | HAL-C-B-M-490, HAL-C-C-M-1110, HAL-C-A-M-800, HAL-C-D-M-800, HAL-C-E-M-180 | 100% |  | 2026-10-20 | 2026-10-27 |  |  | Plumber [112 h]; Construction Cost [1440] | 1,440 | 1,440 |  | 06 | 03 |  |
| HAL-C-TC-M-3456 |  | Testing and Commissioning of Wall propeller type exhaust fans | 7d | 2026-09-15 A | 2026-10-25 A | HAL-C-B-M-470, HAL-C-C-M-1090, HAL-C-A-M-780, HAL-C-D-M-780, HAL-C-E-M-160 | 100% |  | 2026-11-01 | 2026-11-09 |  |  | AC Technician [112 h]; Construction Cost [15750] | 15,750 | 15,750 |  | 06 | 03 |  |
| HAL-C-TC-M3446 |  | Testing and Commissioning of Exhaust Fan | 7d | 2026-09-15 A | 2026-10-25 A | HAL-C-B-M-440, HAL-C-C-M-1060, HAL-C-A-M-750, HAL-C-D-M-750, HAL-C-E-M-130 | 100% |  | 2026-11-01 | 2026-11-09 |  |  | AC Technician [112 h]; Construction Cost [8437.5] | 8,437.5 | 8,437.5 |  | 06 | 03 |  |
| HAL-C-TC-M-3386 |  | Testing and Commissioning of Fire Hose Cabinet | 3d | 2026-09-24 A | 2026-10-25 A | HAL-C-B-M-630, HAL-C-C-M-1250, HAL-C-A-M-940, HAL-C-D-M-940, HAL-C-E-M-320 | 100% |  | 2026-11-01 | 2026-11-04 |  |  | Pipe Fitter [112 h]; Construction Cost [10080] | 10,080 | 10,080 |  | 06 | 03 |  |
| HAL-C-TC-M-3426 |  | Testing and Commissioning of Sanitary Fixtures | 7d | 2026-09-24 A | 2026-10-25 A | HAL-C-B-M-500, HAL-C-C-M-1120, HAL-C-A-M-810, HAL-C-D-M-810, HAL-C-E-M-190, HAL-C-TC-M-3416 SS | 100% |  | 2026-10-18 | 2026-10-25 |  |  | Plumber [112 h]; Construction Cost [14688] | 14,688 | 14,688 |  | 06 | 03 |  |

| ID | WBS | Activity | Duration | Start | Finish | Predecessors | Complete | Remaining | Planned start | Planned finish | Total float | Free float | Resources | Cost | Actual cost | Phasing Code Category | Discipline |
| --- | --- | --- | --- | --- | --- | --- | --- | --- | --- | --- | --- | --- | --- | --- | --- | --- | --- |
|  | 2 | **ELECTRICAL** |  | 2026-09-15 | 2026-10-26 |  |  |  |  |  |  |  |  |  |  |  |  |
| HAL-C-TC-E-3556 |  | Testing and Commissioning of Solar power plant | 1d | 2026-09-15 A | 2026-10-25 A | HAL-C-B-E-730, HAL-C-C-E-1350, HAL-C-A-E-1040 SS, HAL-C-D-E-1040 SS, HAL-C-E-E-420 SS | 100% |  | 2026-10-19 | 2026-10-19 |  |  | Electrician [32 h]; Construction Cost [198000] | 198,000 | 198,000 | 06 | 04 |
| HAL-C-TC-E-3476 |  | Testing and Commissioning of Lighting Fixtures | 1d | 2026-10-01 A | 2026-10-25 A | HAL-C-B-E-383, HAL-C-C-E-843, HAL-C-A-E-613 SS, HAL-C-D-E-613 SS, HAL-C-E-E-153 | 100% |  | 2026-10-12 | 2026-10-13 |  |  | Electrician [16 h]; Construction Cost [64836] | 64,836 | 64,836 | 06 | 04 |
| HAL-C-TC-E-3446 |  | Testing and Commissioning of LV cables | 1d | 2026-10-08 A | 2026-10-25 A | HAL-C-B-E-453, HAL-C-C-E-913, HAL-C-A-E-683 SS, HAL-C-D-E-683 SS, HAL-C-E-E-223 | 100% |  | 2026-10-17 | 2026-10-18 |  |  | Electrician [32 h]; Construction Cost [28530] | 28,530 | 28,530 | 06 | 04 |
| HAL-C-TC-E-3456 |  | Testing and Commissioning of Main Distribution Board | 2d | 2026-10-08 A | 2026-10-25 A | HAL-C-B-E-423, HAL-C-C-E-883, HAL-C-A-E-653 SS, HAL-C-D-E-653, HAL-C-E-E-193, HAL-C-TC-M-3376, HAL-C-TC-M-3396, HAL-C-TC-M3446 SS | 100% |  | 2026-10-22 | 2026-10-25 |  |  | Electrician [112 h]; Construction Cost [23040] | 23,040 | 23,040 | 06 | 04 |
| HAL-C-TC-E-3466 |  | Testing and Commissioning of Disconnect Switches | 1d | 2026-10-08 A | 2026-10-25 A | HAL-C-TC-M-3436, HAL-C-TC-M-3456 SS, HAL-C-B-E-433, HAL-C-C-E-893, HAL-C-A-E-663, HAL-C-D-E-663, HAL-C-E-E-203 | 100% |  | 2026-10-22 | 2026-10-24 |  |  | Electrician [112 h]; Construction Cost [23337] | 23,337 | 23,337 | 06 | 04 |
| HAL-C-TC-E-3486 |  | Testing and Commissioning of Grounding | 1d | 2026-10-08 A | 2026-10-25 A | HAL-C-B-E-343 SS, HAL-C-C-E-803 SS, HAL-C-A-E-573 SS, HAL-C-D-E-573 SS, HAL-C-E-E-113 SS | 100% |  | 2026-10-17 | 2026-10-18 |  |  | Electrician [32 h]; Construction Cost [15374.2] | 15,374.25 | 15,374.25 | 06 | 04 |
| HAL-C-TC-E-3496 |  | Testing and Commissioning of Fire Alarm System | 2d | 2026-10-08 A | 2026-10-25 A | HAL-C-TC-M-3426, HAL-C-TC-M-3416, HAL-C-B-E-353, HAL-C-C-E-813, HAL-C-A-E-583 SS, HAL-C-D-E-583, HAL-C-E-E-123 | 100% |  | 2026-10-15 | 2026-10-17 |  |  | Electrician [32 h]; Construction Cost [16497] | 16,497 | 16,497 | 06 | 04 |
| HAL-C-TC-E-3506 |  | Testing and Commissioning of Wiring Devices | 4d | 2026-10-08 A | 2026-10-25 A | HAL-C-B-E-403, HAL-C-C-E-863, HAL-C-A-E-633, HAL-C-D-E-633, HAL-C-E-E-173, HAL-C-E-E-203 | 100% |  | 2026-10-22 | 2026-10-27 |  |  | Electrician [112 h]; Construction Cost [18756] | 18,756 | 18,756 | 06 | 04 |
| HAL-C-TC-E-3516 |  | Testing and Commissioning of LP panel board | 1d | 2026-10-08 A | 2026-10-25 A | HAL-C-TC-E-3456 SS, HAL-C-B-E-473, HAL-C-C-E-933, HAL-C-A-E-703, HAL-C-D-E-703 SS, HAL-C-E-E-243 | 100% |  | 2026-10-22 | 2026-10-24 |  |  | Electrician [32 h]; Construction Cost [13680] | 13,680 | 13,680 | 06 | 04 |
| HAL-C-TC-E-3526 |  | Testing and Commissioning of PP-AC panel | 1d | 2026-10-08 A | 2026-10-25 A | HAL-C-B-E-483, HAL-C-C-E-943, HAL-C-A-E-713, HAL-C-D-E-713 SS, HAL-C-E-E-253 | 100% |  | 2026-10-17 | 2026-10-18 |  |  | Electrician [80 h]; Construction Cost [16470] | 16,470 | 16,470 | 06 | 04 |
| HAL-C-TC-E-3536 |  | Testing and Commissioning of Telephone and data system | 1d | 2026-10-08 A | 2026-10-25 A | HAL-C-B-E-443, HAL-C-C-E-903, HAL-C-A-E-673, HAL-C-D-E-673 SS, HAL-C-E-E-213 | 100% |  | 2026-10-17 | 2026-10-18 |  |  | Electrician [80 h]; Construction Cost [21069] | 21,069 | 21,069 | 06 | 04 |
| HAL-C-TC-E-3546 |  | Testing and Commissioning of Access Control System | 2d | 2026-10-08 A | 2026-10-26 | HAL-C-B-E-503 SS, HAL-C-C-E-963 SS, HAL-C-A-E-733 SS, HAL-C-D-E-733 SS, HAL-C-E-E-273 SS | 90% | 0.2d | 2026-10-14 | 2026-10-17 | 6.8d | 6.3d | Electrician [32 h]; Construction Cost [21987] | 21,987 | 19,788.3 | 06 | 04 |
| HAL-C-TC-E-3566 |  | Testing and Commissioning of CCTV System | 1d | 2026-10-08 A | 2026-10-25 A | HAL-C-B-E-720, HAL-C-C-E-1340, HAL-C-A-E-1030 SS, HAL-C-D-E-1030 SS, HAL-C-E-E-410 | 100% |  | 2026-10-18 | 2026-10-19 |  |  | Electrician [32 h]; Construction Cost [59841] | 59,841 | 59,841 | 06 | 04 |
|  | 4 | **TESTING AND COMMISSIONING SITE INFRASTRUCTURE** |  | 2026-06-22 | 2026-10-26 |  |  |  |  |  |  |  |  |  |  |  |  |
|  | 6 | **PUMP ROOM SHED** |  | 2026-07-22 | 2026-10-26 |  |  |  |  |  |  |  |  |  |  |  |  |
| HAL-C-TC-M-3596 |  | Testing & Commissioning of GRP tank | 3d | 2026-07-22 A | 2026-07-23 A | HAL-C-EX-M-1371 | 100% |  | 2026-09-02 | 2026-09-06 |  |  | Plumber [48 h]; General Labour [48 h]; Construction Cost [61200] | 61,200 | 61,200 | 06 | 06 |
| HAL-C-TC-M-3576 |  | Testing & Commissioning of Fire Fighting pump | 2d | 2026-09-15 A | 2026-10-26 | HAL-C-EX-M-1301, HAL-C-TC-E-3496 SS | 90% | 0.2d | 2026-10-31 | 2026-11-01 | 6.8d | 6.3d | Pipe Fitter [80 h]; General Labour [80 h]; Construction Cost [54000] | 54,000 | 48,600 | 06 | 06 |
| HAL-C-TC-M-3586 |  | Testing & Commissioning of Booster pump | 2d | 2026-09-15 A | 2026-10-26 | HAL-C-EX-M-1341, HAL-C-TC-M-3426 | 90% | 0.2d | 2026-10-31 | 2026-11-01 | 6.8d | 6.3d | Pipe Fitter [112 h]; General Labour [112 h]; Construction Cost [6300] | 6,300 | 5,670 | 06 | 06 |
| HAL-C-TC-E-3616 |  | Testing and Commissioning of Panel Board | 1d | 2026-10-12 A | 2026-10-25 A | HAL-C-EX-E-236 | 100% |  | 2026-10-13 | 2026-10-13 |  |  | Electrician [32 h]; Construction Cost [936] | 936 | 936 | 06 | 06 |
| HAL-C-TC-E-3621 |  | Testing and Commissioning of LV cables | 2d | 2026-10-12 A | 2026-10-25 A | HAL-C-EX-E-216 SS | 100% |  | 2026-10-12 | 2026-10-13 |  |  | Electrician [80 h]; Construction Cost [412.65] | 412.65 | 412.65 | 06 | 06 |
| HAL-C-TC-E-3626 |  | Testing and Commissioning of Lighting Fixtures | 2d | 2026-10-12 A | 2026-10-25 A | HAL-C-EX-E-196 SS | 100% |  | 2026-10-18 | 2026-10-20 |  |  | Electrician [32 h]; Construction Cost [1152.45] | 1,152.45 | 1,152.45 | 06 | 06 |
| HAL-C-TC-E-3636 |  | Testing and Commissioning of Grounding | 5d | 2026-10-12 A | 2026-10-25 A | HAL-C-EX-E-186 | 100% |  | 2026-10-15 | 2026-10-21 |  |  | Electrician [80 h]; Construction Cost [220.5] | 220.5 | 220.5 | 06 | 06 |
| HAL-C-TC-E-3646 |  | Testing and Commissioning of Wiring devices | 2d | 2026-10-12 A | 2026-10-25 A | HAL-C-EX-E-1321 SS | 100% |  | 2026-10-12 | 2026-10-13 |  |  | Electrician [32 h]; Construction Cost [692.1] | 692.1 | 692.1 | 06 | 06 |
| HAL-C-TC-E-3656 |  | Testing and Commissioning of Programmable Logic Controller | 2d | 2026-10-12 A | 2026-10-25 A | HAL-C-EX-E-1331 SS | 100% |  | 2026-10-18 | 2026-10-20 |  |  | Electrician [32 h]; Construction Cost [28800] | 28,800 | 28,800 | 06 | 06 |

| ID | WBS | Activity | Duration | Start | Finish | Predecessors | Complete | Planned start | Planned finish | Total float | Free float | Resources | Cost | Actual cost | Phasing Code Category | Discipline |
| --- | --- | --- | --- | --- | --- | --- | --- | --- | --- | --- | --- | --- | --- | --- | --- | --- |
|  | 7 | **EXTERNAL** |  | 2026-10-15 | 2026-10-25 |  |  |  |  |  |  |  |  |  |  |  |
| HAL-C-TC-EX-E-3626 |  | Testing and Commissioning of LV cables | 7d | 2026-10-15 A | 2026-10-25 A | HAL-C-EX-E-380 | 100% | 2026-10-15 | 2026-10-22 |  |  | Electrician [112 h]; Construction Cost [8883] | 8,883 | 8,883 | 06 | 06 |
| HAL-C-TC-EX-E-3646 |  | Testing and Commissioning of Street Lighting pole | 7d | 2026-10-15 A | 2026-10-25 A | HAL-C-EX-E-430 | 100% | 2026-10-15 | 2026-10-22 |  |  | Electrician [240 h]; Construction Cost [21446.1] | 21,446.1 | 21,446.1 | 06 | 06 |
| HAL-C-TC-EX-E-3656 |  | Testing and Commissioning of Grounding | 7d | 2026-10-20 A | 2026-10-25 A | HAL-C-EX-E-470 | 100% | 2026-10-20 | 2026-10-27 |  |  | Electrician [112 h]; Construction Cost [1759.05] | 1,759.05 | 1,759.05 | 06 | 06 |
|  | 5 | **ENVIRONMENTAL** |  | 2026-06-22 | 2026-10-25 |  |  |  |  |  |  |  |  |  |  |  |
| HAL-C-TC-ENV-F-1051 |  | Testing & Commissioning of External Fire Fighting System 200 Dia | 15d | 2026-06-22 A | 2026-09-24 A | HAL-C-ENV-F-192 | 100% | 2026-08-23 | 2026-09-09 |  |  | Pipe Fitter [240 h]; Construction Cost [24300.9] | 24,300.9 | 24,300.9 | 06 | 07 |
| HAL-C-TC-ENV-SW-60 |  | Testing & Commissioning of Sewer & Drainage System | 15d | 2026-06-22 A | 2026-09-24 A | HAL-C-ENV-SW-546 | 100% | 2026-10-07 | 2026-10-25 |  |  | Plumber [240 h]; Construction Cost [19571.4] | 19,571.4 | 19,571.4 | 06 | 07 |
| HAL-C-TC-ENV-WS-11 |  | Testing & Commissioning of Water Supply System | 15d | 2026-06-22 A | 2026-09-24 A | HAL-C-ENV-WS-766 | 100% | 2026-08-31 | 2026-09-17 |  |  | Plumber [240 h]; Construction Cost [13644] | 13,644 | 13,644 | 06 | 07 |
| HAL-C-TC-E-3666 |  | Testing and Commissioning of Main program system & controller | 5d | 2026-09-15 A | 2026-10-25 A | HAL-C-ENV-SW-616 SS | 100% | 2026-10-04 | 2026-10-08 |  |  | Electrician [240 h]; Construction Cost [14400] | 14,400 | 14,400 | 06 | 07 |
| HAL-C-TC-ENV-SW-70 |  | Testing & Commissioning of Irrigaiton System | 5d | 2026-09-15 A | 2026-10-25 A | HAL-C-ENV-SW-606 | 100% | 2026-10-04 | 2026-10-08 |  |  | Plumber [80 h]; Construction Cost [558] | 558 | 558 | 06 | 07 |
|  | 1 | **SNAGG WORKS** |  | 2026-04-25 | 2026-06-20 |  |  |  |  |  |  |  |  |  |  |  |
| HAL-C-TC-S-9100 |  | Architectural Snagg works -1 | 10d | 2026-04-25 A | 2026-04-30 A | HAL-C-B-S-697 | 100% | 2026-07-09 | 2026-07-21 |  |  | Construction Cost [1700245] | 1,700,245.42 | 1,700,245.42 | 06 | 01 |
| HAL-C-TC-A-9100 |  | Mechanical Snagg works | 10d | 2026-06-01 A | 2026-06-04 A | HAL-C-EX-E-400 | 100% | 2026-08-13 | 2026-08-25 |  |  | Construction Cost [340975] | 340,974.9 | 340,974.9 | 06 | 03 |
| HAL-C-TC-S-9090 |  | Civil Snagg works | 7d | 2026-06-01 A | 2026-06-04 A | HAL-C-E-S-6101 | 100% | 2026-07-30 | 2026-08-06 |  |  | Construction Cost [200001] | 200,001 | 200,001 | 06 | 01 |
| HAL-C-TC-S-9110 |  | Architectural Snagg works-2 | 10d | 2026-06-02 A | 2026-06-02 A | HAL-C-TC-ENV-F-1051 | 100% | 2026-11-08 | 2026-11-19 |  |  | Construction Cost [799865] | 799,864.73 | 799,864.73 | 06 | 01 |
| HAL-C-TC-M-9110 |  | Electrical Snagg works | 5d | 2026-06-13 A | 2026-06-20 A | HAL-C-EX-E-400 | 100% | 2026-08-18 | 2026-08-24 |  |  | Construction Cost [199158] | 199,157.85 | 199,157.85 | 06 | 04 |
| HAL-C-TC-E-9120 |  | External Snagg works | 5d | 2026-06-17 A | 2026-06-20 A | HAL-C-EX-E-390 | 100% | 2026-09-14 | 2026-09-20 |  |  | Construction Cost [173196] | 173,195.64 | 173,195.64 | 06 | 06 |
|  | 7 | **PREOJECT CLOSEOUT** |  | 2026-10-26 | 2026-11-04 |  |  |  |  |  |  |  |  |  |  |  |
|  | 1 | **ENGINEERING** |  | 2026-10-26 | 2026-10-28 |  |  |  |  |  |  |  |  |  |  |  |
|  | 1 | **AS BUILT DRAWINGS** |  | 2026-10-26 | 2026-10-27 |  |  |  |  |  |  |  |  |  |  |  |
|  | 4 | **CIVIL DRAWINGS** |  | 2026-10-26 | 2026-10-26 |  |  |  |  |  |  |  |  |  |  |  |
|  | 1 | **PREPARATION AND SUBMITTALS** |  | 2026-10-26 | 2026-10-26 |  |  |  |  |  |  |  |  |  |  |  |
| HAL-AB-1010 |  | Civil drawings | 1d | 2026-10-26 | 2026-10-26 | HAL-C-EX-R-1480 SS |  |  |  | 0d |  | Draftman [32 h] |  |  | 07 |  |
|  | 2 | **REVIEW AND APPROVALS** |  | 2026-10-26 | 2026-10-26 |  |  |  |  |  |  |  |  |  |  |  |
| HAL-AB-1053 |  | Civil drawings | 1d | 2026-10-26 | 2026-10-26 | HAL-AB-1010 SS |  |  |  | 2d | 1d |  |  |  | 07 |  |

| ID | WBS | Activity | Duration | Start | Finish | Predecessors | Total float | Free float | Resources | Phasing Code Category |
| --- | --- | --- | --- | --- | --- | --- | --- | --- | --- | --- |
|  | 1 | **ARCHITECTURAL DRAWINGS** |  | 2026-10-26 | 2026-10-26 |  |  |  |  |  |
|  | 1 | **PREPARATION AND SUBMITTALS** |  | 2026-10-26 | 2026-10-26 |  |  |  |  |  |
| HAL-AB-1011 |  | Architectural drawings | 1d | 2026-10-26 | 2026-10-26 | HAL-AB-1010 SS | 0d |  | Draftman [32 h] | 07 |
|  | 2 | **REVIEW AND APPROVALS** |  | 2026-10-26 | 2026-10-26 |  |  |  |  |  |
| HAL-AB-1023 |  | Architectural drawings | 1d | 2026-10-26 | 2026-10-26 | HAL-AB-1011 SS | 2d | 1d |  | 07 |
|  | 2 | **MECHANICAL DRAWINGS** |  | 2026-10-26 | 2026-10-26 |  |  |  |  |  |
|  | 1 | **PREPARATION AND SUBMITTALS** |  | 2026-10-26 | 2026-10-26 |  |  |  |  |  |
| HAL-AB-1013 |  | Mechanical drawings | 1d | 2026-10-26 | 2026-10-26 | HAL-AB-1011 SS | 0d |  | Draftman [32 h] | 07 |
|  | 2 | **REVIEW AND APPROVALS** |  | 2026-10-26 | 2026-10-26 |  |  |  |  |  |
| HAL-AB-1033 |  | Mechanical drawings | 1d | 2026-10-26 | 2026-10-26 | HAL-AB-1013 SS | 2d | 1d |  | 07 |
|  | 3 | **ELECTRICAL DRAWINGS** |  | 2026-10-26 | 2026-10-26 |  |  |  |  |  |
|  | 1 | **PREPARATION AND SUBMITTALS** |  | 2026-10-26 | 2026-10-26 |  |  |  |  |  |
| HAL-AB-1012 |  | Electrical drawings | 1d | 2026-10-26 | 2026-10-26 | HAL-AB-1013 SS | 0d |  | Draftman [32 h] | 07 |
|  | 2 | **REVIEW AND APPROVALS** |  | 2026-10-26 | 2026-10-26 |  |  |  |  |  |
| HAL-AB-1043 |  | Electrical drawings | 1d | 2026-10-26 | 2026-10-26 | HAL-AB-1012 SS | 2d | 1d |  | 07 |
|  | 5 | **EXTERNAL WORKS DRAWINGS** |  | 2026-10-26 | 2026-10-27 |  |  |  |  |  |
|  | 1 | **PREPARATION AND SUBMITTALS** |  | 2026-10-26 | 2026-10-26 |  |  |  |  |  |
| HAL-AB-1054 |  | External works drawings | 1d | 2026-10-26 | 2026-10-26 | HAL-AB-1012 SS | 0d |  | Draftman [32 h] | 07 |
|  | 2 | **REVIEW AND APPROVALS** |  | 2026-10-27 | 2026-10-27 |  |  |  |  |  |
| HAL-AB-1055 |  | External works drawings | 1d | 2026-10-27 | 2026-10-27 | HAL-AB-1054 | 0d |  |  | 07 |
|  | 2 | **WARRANTIES AND GUARANTEES** |  | 2026-10-27 | 2026-10-28 |  |  |  |  |  |
|  | 1 | **SYSTEM** |  | 2026-10-27 | 2026-10-28 |  |  |  |  |  |
|  | 1 | **PREPARATION AND SUBMITTALS** |  | 2026-10-27 | 2026-10-27 |  |  |  |  |  |
| HAL-WG-1010 |  | Warraties and Guarantees For Mechanical Equipments | 1d | 2026-10-27 | 2026-10-27 | HAL-AB-1055 SS | 0d |  | Engineer [32 h] | 07 |
| HAL-WG-1011 |  | Warraties and Guarantees For Electrical Systems | 1d | 2026-10-27 | 2026-10-27 | HAL-WG-1010 SS | 0d |  | Engineer [32 h] | 07 |

| ID | WBS | Activity | Duration | Start | Finish | Predecessors | Total float | Free float | Resources | Phasing Code Category |
| --- | --- | --- | --- | --- | --- | --- | --- | --- | --- | --- |
|  | 2 | **REVIEW AND APPROVAL** |  | 2026-10-28 | 2026-10-28 |  |  |  |  |  |
| HAL-WG-1012 |  | Warraties and Guarantees For Mechanical Equipments | 1d | 2026-10-28 | 2026-10-28 | HAL-WG-1010 | 0d |  |  | 07 |
| HAL-WG-1013 |  | Warraties and Guarantees For Electrical Systems | 1d | 2026-10-28 | 2026-10-28 | HAL-WG-1011 | 0d |  |  | 07 |
|  | 2 | **TRAINING AND MANUALS** |  | 2026-10-29 | 2026-11-03 |  |  |  |  |  |
|  | 1 | **TRAINING** |  | 2026-10-29 | 2026-11-01 |  |  |  |  |  |
|  | 1 | **SYSTEM** |  | 2026-10-29 | 2026-11-01 |  |  |  |  |  |
|  | 1 | **PREPARATION AND SUBMITTALS** |  | 2026-10-29 | 2026-10-29 |  |  |  |  |  |
| HAL-WG-1014 |  | The Proposed Coursework For Mechanical Equipment | 1d | 2026-10-29 | 2026-10-29 | HAL-WG-1012 | 0d |  | Engineer [32 h] | 07 |
| HAL-WG-1015 |  | The Proposed Coursework For Electircal systems | 1d | 2026-10-29 | 2026-10-29 | HAL-WG-1014 SS, HAL-WG-1013 | 0d |  | Engineer [32 h] | 07 |
|  | 2 | **REVIEW AND APPROVAL** |  | 2026-10-31 | 2026-10-31 |  |  |  |  |  |
| HAL-WG-1016 |  | The Proposed Coursework For Mechanical Equipment | 1d | 2026-10-31 | 2026-10-31 | HAL-WG-1014 | 0d |  |  | 07 |
| HAL-WG-1017 |  | The Proposed Coursework For Electircal systems | 1d | 2026-10-31 | 2026-10-31 | HAL-WG-1016 SS, HAL-WG-1015, HAL-WG-1015 FF | 0d |  |  | 07 |
|  | 3 | **DELIVERY** |  | 2026-11-01 | 2026-11-01 |  |  |  |  |  |
| HAL-WG-1018 |  | The Proposed Coursework For Mechanical Equipment | 1d | 2026-11-01 | 2026-11-01 | HAL-WG-1016 | 0d |  |  | 07 |
| HAL-WG-1019 |  | The Proposed Coursework For Electircal systems | 1d | 2026-11-01 | 2026-11-01 | HAL-WG-1018 SS, HAL-WG-1017, HAL-WG-1017 FF | 0d |  |  | 07 |
|  | 2 | **MANUALS** |  | 2026-11-02 | 2026-11-03 |  |  |  |  |  |
|  | 1 | **SYSTEM** |  | 2026-11-02 | 2026-11-03 |  |  |  |  |  |
|  | 1 | **PREPARATION AND SUBMITTALS** |  | 2026-11-02 | 2026-11-02 |  |  |  |  |  |
| HAL-WG-1020 |  | Manual and Catalogue For Mechanical Equipment | 1d | 2026-11-02 | 2026-11-02 | HAL-WG-1018 | 0d |  | Engineer [32 h] | 07 |
| HAL-WG-1021 |  | Manual and Catalogue For For Electircal systems | 1d | 2026-11-02 | 2026-11-02 | HAL-WG-1019 | 0d |  | Engineer [32 h] | 07 |
|  | 2 | **REVIEW AND APPROVAL** |  | 2026-11-03 | 2026-11-03 |  |  |  |  |  |
| HAL-WG-1022 |  | Manual and Catalogue For Mechanical Equipment | 1d | 2026-11-03 | 2026-11-03 | HAL-WG-1020 | 0d |  |  | 07 |
| HAL-WG-1023 |  | Manual and Catalogue For For Electircal systems | 1d | 2026-11-03 | 2026-11-03 | HAL-WG-1021 | 0d |  |  | 07 |
|  | 4 | **DEMOBILIZATION** |  | 2026-10-28 | 2026-11-03 |  |  |  |  |  |
| HAL-D.MOB-1013 |  | Demobilization of manpower | 2d | 2026-10-28 | 2026-10-29 | HAL-AB-1010, HAL-AB-1011, HAL-AB-1013, HAL-AB-1012, HAL-AB-1023, HAL-AB-1033, HAL-AB-1043, HAL-AB-1053, HAL-AB-1055 | 1d | 0d |  | 07 |
| HAL-D.MOB-1020 |  | Demobilization of equipment | 2d | 2026-10-31 | 2026-11-01 | HAL-D.MOB-1013 | 1d | 0.5d |  | 07 |
| HAL-D.MOB-1010 |  | Dismantling and removal offices | 1d | 2026-11-03 | 2026-11-03 | HAL-WG-1023 SS | 0d |  | Helper [16 h]; Plumber [16 h]; Mason [16 h]; Electrician [16 h]; AC Technician [16 h]; STEEL FIXER [16 h]; Carpenter [16 h] | 07 |

| ID | WBS | Activity | Duration | Start | Finish | Predecessors | Total float | Free float | Phasing Code Category |
| --- | --- | --- | --- | --- | --- | --- | --- | --- | --- |
|  | 5 | **FINAL HANDOVER** |  | 2026-11-02 | 2026-11-04 |  |  |  |  |
| HAL-FH-1000 |  | Snag List Rectification | 1d | 2026-11-02 | 2026-11-03 | HAL-D.MOB-1013 SS, HAL-D.MOB-1020, HAL-C-TC-M-3586, HAL-C-TC-M-3576, HAL-C-TC-M-3596, HAL-C-TC-E-3636, HAL-C-TC-E-3626, HAL-C-TC-E-3621, HAL-C-TC-E-3616, HAL-C-TC-E-3646, HAL-C-TC-EX-E-3656, HAL-C-TC-EX-E-3626, HAL-C-TC-EX-E-3646, HAL-C-TC-ENV-F-1051, HAL-C-TC-ENV-SW-60, HAL-C-TC-ENV-WS-11, HAL-C-TC-M-3406, HAL-C-TC-E-3546, HAL-C-EX-M-1391, HAL-C-EX-E-480, HAL-C-EX-S-1384, HAL-C-EX-R-1440 SS, HAL-C-TC-E-3446, HAL-C-TC-E-3486, HAL-C-TC-E-3536 SS, HAL-C-TC-E-3526 SS, HAL-C-TC-E-3516 SS, HAL-PMS-MMS-0030, HAL-PMS-MMS-0020, HAL-PMS-MMS-0070, HAL-PMS-MMS-0040, HAL-PMS-MMS-0060, HAL-PMS-MMS-0050, HAL-PMS-MMS-0080, HAL-PMS-DMS-2320, HAL-PMS-DMS-2370, HAL-PMS-DMS-2460, HAL-PMS-DMS-2450, HAL-C-ENV-SW-546, HAL-C-A-E-763, HAL-C-TC-M-3376, HAL-C-GEN-620, HAL-C-A1-SS-1020, HAL-C-A1-SS-1040, HAL-C-B-M-680, HAL-C-B-M-550, HAL-C-B-M-640, HAL-C-B-E-533, HAL-C-C-SS-1020, HAL-C-C-SS-1040, HAL-C-C-A-1780, HAL-C-C-M-1300, HAL-C-C-M-1170, HAL-C-C-M-1260, HAL-C-C-E-993, HAL-C-A-SS-1020, HAL-C-A-SS-1040, HAL-C-A-A-1370, HAL-C-A-M-990, HAL-C-A-M-860, HAL-C-A-M-950, HAL-C-D-SS-1020, HAL-C-D-SS-1040, HAL-C-D-A-1260, HAL-C-D-A-1370, HAL-C-D-M-990, HAL-C-D-M-860, HAL-C-D-M-950, HAL-C-D-E-763, HAL-C-E-SS-1020, HAL-C-E-SS-1040, HAL-C-E-A-420, HAL-C-E-M-370, HAL-C-E-M-429, HAL-C-E-M-330, HAL-C-E-E-303, HAL-C-ENV-WS-826, HAL-C-PR-S-368, HAL-C-EX-R-1520, HAL-C-TC-E-3566 SS, HAL-C-TC-E-3556, HAL-C-TC-E-3656, HAL-C-TC-ENV-SW-70, HAL-C-TC-E-3666, HAL-C-TC-E-3476, HAL-C-TC-A-9100, HAL-C-TC-S-9100, HAL-C-TC-S-9090, HAL-C-TC-M-9110, HAL-C-TC-S-9110, HAL-C-TC-E-3466, HAL-C-TC-E-3506 SS, HAL-C-TC-E-3496, HAL-C-TC-M-3386, HAL-C-TC-M-3396, HAL-C-A-A-250, HAL-C-B-A-790, HAL-P-ST-M-510, HAL-C-A-A-1200 SS | 0.5d | 0d | 07 |
| HAL-FH-1010 |  | Handover Letter | 1d | 2026-11-03 | 2026-11-04 | HAL-FH-1000 | 0.5d |  | 07 |
| HAL-FH-1020 |  | Intial Handingover | 1d | 2026-11-04 | 2026-11-04 | HAL-FH-1010 SS, HAL-WG-1022, HAL-D.MOB-1010, HAL-C-TC-E-9120 | 0d |  | 07 |

## Activity codes

| Code | Value | Meaning |
| --- | --- | --- |
| Discipline | 01 | Structural |
| Discipline | 02 | Architectural |
| Discipline | 03 | Mechanical |
| Discipline | 04 | Electrical |
| Discipline | 06 | External work |
| Discipline | 07 | Environmental |
| Discipline | 08 | Structural Steel |
| New code for weekly report-6 | 4 | Support Unit , RBF 450 & 900 |
| New discipline code-6 | 1 | Structural |
| PS (su & rbf)-6 | 1 | SU |
| Phasing Code Category | 01 | Mile Stones |
| Phasing Code Category | 02 | Mobilization |
| Phasing Code Category | 03 | Engineering |
| Phasing Code Category | 04 | Procurement |
| Phasing Code Category | 05 | Construction |
| Phasing Code Category | 06 | Testing and Commissioning |
| Phasing Code Category | 07 | Project Closeout |
| Procurement Lead Category | 01 | Long Lead Items |
| Procurement Lead Category | 02 | Short Lead Items |
| Procurement Stages | 01 | PO |
| Procurement Stages | 02 | Manufacturing |
| Procurement Stages | 03 | Material Delivery |
| Procurement Stages | 04 | Staging |
| Project component code | 01 | Block A |
| Project component code | 02 | Block B |
| Project component code | 03 | Block C |
| Project component code | 04 | Block D |
| Project component code | 05 | Block E |
| project summary-6 | 3 | STRUCTURAL WORKS |
