# MKH2-02-003 - Completion of Infrastructure Works at the Second Industrial City in Makkah UP 35

Schedule from Primavera P6, 2026-02-15 to 2027-09-11, data date 2026-11-03, costs in SAR, A marks actual dates.
Must finish by 2027-08-14

## Calendars

- MKH2-02-003 - Completion of Infrastructure Works at the Second Industrial City in Makkah: Mon-Thu 07:00-17:00; Fri off; Sat-Sun 07:00-17:00. Exceptions (off unless hours are given): 2026-02-20, 2026-02-22, 2026-02-27, 2026-03-21 to 2026-03-23, 2026-04-03, 2026-04-10, 2026-04-17, 2026-04-24, 2026-05-01, 2026-05-08, 2026-05-15, 2026-05-22, 2026-05-26 to 2026-05-29, 2026-06-05, 2026-06-12, 2026-06-19, 2026-06-26, 2026-07-03, 2026-07-10, 2026-07-17, 2026-07-24, 2026-07-31, 2026-09-23, 2027-02-22, 2027-03-10 to 2027-03-11, 2027-03-13, 2027-05-15 to 2027-05-17.

## Resources

| Resource | Group | Rate |
| --- | --- | --- |
| Labor | labor |  |
| Purchaser | labor |  |
| Cost for Proc | material |  |
| QA/QC Engineer | labor |  |
| Consultant Staff | labor |  |
| Draftsman | labor |  |
| Cost for Engg | material |  |
| Excavator | equipment |  |
| Loader | equipment |  |
| Bulldozer | equipment |  |
| Truck | equipment |  |
| Driver | labor |  |
| Eq. Operator | labor |  |
| Removal of existing curbstone | material | 30 |
| Milling machine | equipment |  |
| Bobcat | equipment |  |
| Milling of the existing asphalt layer | material | 10 |
| Removal of the existing asphalt layers (up to base course layer) | material | 35 |
| Removal of the existing signages | material | 5000 |
| Removal of the existing Street Lighting Poles | material | 2500 |
| Water Tanker | equipment |  |
| Grader | equipment |  |
| Road Roller | equipment |  |
| Roadway Excavation for cuttings (all types of soil) | material | 20 |
| Embankments to the ROW In road Works | material | 18 |
| Subgrade | material | 22 |
| Aggregate base course | material | 50 |
| Bituminous base course (Grading I - Class A), including Prime Coat | material | 560 |
| Asphalte Paver | equipment |  |
| Bituminous concrete wearing course including Tack coat | material | 580 |
| Skilled Labor | labor |  |
| Precast Concrete Kerb, Type K1-A | material | 60 |
| Precast Concrete Kerb, Type K4 | material | 60 |
| Precast Concrete Kerb, Type K1-B | material | 55 |
| Mason | labor |  |
| 60mm thick - Interlocking block pavers for sidewalk/footpath | material | 70 |
| Retroreflective Thermoplastic White paiting and traffic lines | material | 36 |
| Retroreflective Thermoplastic Yellow paiting and traffic lines | material | 36 |
| Traffic signs, ground mounted, Sheet Alumenium, (breakaway)Single post, with all accessories | material | 1700 |
| Crane | equipment |  |
| Set of traffic signals at intersection , the set include 4 signals | material | 750000 |
| Compactor | equipment |  |
| Electrician | labor |  |
| Cable, Copper 4Cx16mm2 +1Cx10mm2 CU/XLPE/SWA/PVC | material | 70 |
| Cable, Copper 4Cx50mm2 +1Cx25mm2 CU/XLPE/SWA/PVC | material | 175 |
| Cable, Copper 4Cx95mm2 +1Cx50mm2 CU/XLPE/SWA/PVC | material | 270 |
| Carpenter | labor |  |
| Steel Fixer | labor |  |
| Lighting poles with 2 arms, height of ( 16 ) meters | material | 8000 |
| Lighting poles with 1 arm, height of ( 10 ) meters | material | 6400 |
| Street Lighting( LED) Luminaire of Output = 36385 lumen complete with control gear and lamp, (262) WATT. | material | 1600 |
| Street Lighting( LED) Luminaire of Output = 16784 lumen complete with control gear and lamp, (107) WATT. | material | 2000 |
| Including earthing of lighting poles ,masts. feeder pillars , unit substations, L.V feeders and KWH meter. | material | 1500 |
| Road crossing ducts, 2 ways (2 x 150mm PVC) | material | 300 |
| Road crossing ducts, 4 ways (4 x 150mm PVC) | material | 400 |
| Road crossing ducts, 6 ways (6 x 150mm PVC) | material | 650 |
| Plumber | labor |  |
| Drawpit with medium duty steel cover, size600x600x1000mm | material | 6000 |
| Drawpit with medium duty steel cover, size 900x900x1200mm | material | 12000 |
| Street Lighting panels | material | 28000 |
| Feeder pillars | material | 30000 |
| Supply and installation of KWH meter | material | 12000 |
| Excavation in (all types of soil) including all the required backfilling | material | 30 |
| Plain Concrete for box culvert | material | 450 |
| Concrete for box culvert including bitumenous coating (Steel Reinforcement is measured separately) | material | 900 |
| Steel Reinforcement for box culverts as per drawings and the Engineer's instructions | material | 4200 |
| Channel excavation in all type of soil | material | 25 |
| Embankments to the Channel Berms ,with suitable and approved | material | 20 |
| Finished grouted riprap as per drawings | material | 90 |
| Cost for Testing & Comissioning | material |  |

## Schedule

| ID | WBS | Activity | Type | Duration | Start | Finish | Predecessors | Complete | Planned start | Planned finish | Total float | Free float | Resources | Old Activity ID - MK |
| --- | --- | --- | --- | --- | --- | --- | --- | --- | --- | --- | --- | --- | --- | --- |
|  | KEY | **KEY MILESTONES** |  |  | 2026-02-15 | 2027-09-11 |  |  |  |  |  |  |  |  |
|  | GEN | **GENERAL MILESTONES** |  |  | 2026-02-15 | 2027-09-11 |  |  |  |  |  |  |  |  |
| MKH2-02-003-MS-1080 |  | Project Commencement Date | milestone | 0d | 2026-02-15 A | 2026-02-15 A |  | 100% |  |  |  |  |  | MAK-01-MS-1000 |
| MKH2-02-003-MS-1090 |  | Project Kick Off Meeting/NTP | milestone | 0d | 2026-02-15 A | 2026-02-15 A | MKH2-02-003-MS-1080 SS | 100% |  |  |  |  |  | MAK-01-MS-1010 |
| MKH2-02-003-MS-1100 |  | Project Completion | milestone | 0d | 2027-09-11 | 2027-09-11 | MKH2-02-003-CO-1030 FF, MKH2-02-003-MS-1060 FF, MKH2-02-003-MS-1070 FF, MKH2-02-003-MS-1050 FF |  |  |  | -24d | 0d |  | MAK-01-MS-1020 |
|  | OVER ALL | **CONTRACTUAL MILESTONE** |  |  | 2026-03-01 | 2027-09-11 |  |  |  |  |  |  |  |  |
| MKH2-02-003-MS-1010 |  | Baseline Programme Approval | milestone | 0d | 2026-03-01 A | 2026-03-01 A | MKH2-02-003-MB-1190 FF, MKH2-02-003-MB-1320 FF | 100% | 2026-03-02 | 2026-03-02 |  |  |  | A1140 |
| MKH2-02-003-MS-1000 |  | Completion of Mobilization | milestone | 0d | 2026-06-06 A | 2026-06-06 A | MKH2-02-003-MB-1100 FF, MKH2-02-003-MB-1090 FF, MKH2-02-003-MB-1070 FF, MKH2-02-003-MB-1080 FF, MKH2-02-003-MB-1250 FF, MKH2-02-003-MB-1260 FF, MKH2-02-003-MB-1270 FF, MKH2-02-003-MB-1280 FF, MKH2-02-003-MB-1290 FF, MKH2-02-003-MB-1300 FF, MKH2-02-003-MB-1310 FF, MKH2-02-003-MB-1330 FF, MKH2-02-003-MB-1340 FF, MKH2-02-003-MB-1350 FF, MKH2-02-003-MB-1360 FF, MKH2-02-003-MB-1370 FF | 100% | 2026-06-09 | 2026-06-09 |  |  |  | A1130 |
| MKH2-02-003-MS-1020 |  | Prequalification & Material Approval | milestone | 0d | 2026-06-06 A | 2026-06-06 A | MKH2-02-003-EN-2220 FF | 100% | 2026-06-09 | 2026-06-09 |  |  |  | A1150 |
| MKH2-02-003-MS-1030 |  | Completion of Long lead Materials Delivery | milestone | 0d | 2026-08-29 A | 2026-08-29 A | MKH2-02-003-PR-1670 FF, MKH2-02-003-PR-1600 FF | 100% | 2026-11-22 | 2026-11-22 |  |  |  | A1170 |
| MKH2-02-003-MS-1040 |  | Completion of Road Works | milestone | 0d | 2027-01-14 | 2027-01-14 | MKH2-02-003-CN-1350 FF, MKH2-02-003-CN-1360 FF, MKH2-02-003-CN-1390 FF, MKH2-02-003-CN-1370 FF, MKH2-02-003-CN-1380 FF |  |  |  | 42d | 0d |  | A1180 |
| MKH2-02-003-MS-1050 |  | Completion of Open Drain Channel | milestone | 0d | 2027-06-16 | 2027-06-16 | MKH2-02-003-CN-2310 FF |  |  |  | 14d | 38d |  |  |
| MKH2-02-003-MS-1060 |  | Completion of All Works | milestone | 0d | 2027-09-11 | 2027-09-11 | MKH2-02-003-CO-1030 FF |  |  |  | -24d | 0d |  | A1200 |
| MKH2-02-003-MS-1070 |  | Final Handover | milestone | 0d | 2027-09-11 | 2027-09-11 | MKH2-02-003-CO-1030 FF |  |  |  | -24d | 0d |  | A1210 |
|  | MOB | **MOBILIZATION** |  |  | 2026-02-15 | 2026-06-06 |  |  |  |  |  |  |  |  |
|  | SURV | **TOPOGRAPHIC SURVEY** |  |  | 2026-02-15 | 2026-02-23 |  |  |  |  |  |  |  |  |
| MKH2-02-003-MB-1380 |  | Site Survey Works |  | 7d | 2026-02-15 A | 2026-02-23 A | MKH2-02-003-MS-1080 SS | 100% | 2026-03-02 | 2026-03-09 |  |  | QA/QC Engineer [650 h] | MAK-01-TPS-1000 |
|  | OFFICE | **SITE FACILITIES & OFFICES** |  |  | 2026-02-15 | 2026-02-28 |  |  |  |  |  |  |  |  |
| MKH2-02-003-MB-1000 |  | Site Layout Plan |  | 4d | 2026-02-15 A | 2026-02-18 A | MKH2-02-003-MS-1080 SS | 100% | 2026-03-02 | 2026-03-05 |  |  | Labor [800 h] | MAK-01-MOB-1000 |
| MKH2-02-003-MB-1010 |  | Clear & Grub for Offices & Access Road |  | 3d | 2026-02-15 A | 2026-02-19 A | MKH2-02-003-MB-1000, MKH2-02-003-MS-1090 SS | 100% | 2026-03-02 | 2026-03-04 |  |  | Labor [800 h] | MAK-01-MOB-1010 |
| MKH2-02-003-MB-1030 |  | Construct Temporary Fence |  | 7d | 2026-02-15 A | 2026-02-19 A | MKH2-02-003-MB-1010 | 100% | 2026-03-10 | 2026-03-17 |  |  | Labor [1850 h] | MAK-01-MOB-1030 |
| MKH2-02-003-MB-1040 |  | Construct Site Offices & Storage |  | 14d | 2026-02-15 A | 2026-02-22 A | MKH2-02-003-MB-1020 | 100% | 2026-03-11 | 2026-03-30 |  |  | Labor [1850 h] | MAK-01-MOB-1040 |
| MKH2-02-003-MB-1060 |  | Install Site Facilities |  | 4d | 2026-02-15 A | 2026-02-19 A | MKH2-02-003-MB-1030 | 100% | 2026-03-18 | 2026-03-25 |  |  | Labor [750 h] | MAK-01-MOB-1060 |
| MKH2-02-003-MB-1070 |  | Electrical Works & Connections |  | 6d | 2026-02-15 A | 2026-02-19 A | MKH2-02-003-MB-1030 | 100% | 2026-03-18 | 2026-03-28 |  |  | Labor [750 h] | MAK-01-MOB-1070 |
| MKH2-02-003-MB-1080 |  | Construct Parking Sheds |  | 6d | 2026-02-15 A | 2026-02-21 A | MKH2-02-003-MB-1030 | 100% | 2026-03-18 | 2026-03-28 |  |  | Labor [750 h] | MAK-01-MOB-1080 |
| MKH2-02-003-MB-1090 |  | Manpower Mobalization |  | 5d | 2026-02-15 A | 2026-02-21 A | MKH2-02-003-MB-1060 | 100% | 2026-03-26 | 2026-03-31 |  |  | Labor [1050 h] | MAK-01-MOB-1090 |
| MKH2-02-003-MB-1100 |  | Equipment Mobalization |  | 7d | 2026-02-15 A | 2026-02-22 A | MKH2-02-003-MB-1050 | 100% | 2026-03-24 | 2026-03-31 |  |  | Labor [1050 h] | MAK-01-MOB-1100 |
| MKH2-02-003-MB-1020 |  | Construct Site Access Roads |  | 4d | 2026-02-19 A | 2026-02-24 A | MKH2-02-003-MB-1000 | 100% | 2026-03-07 | 2026-03-10 |  |  | Labor [800 h] | MAK-01-MOB-1020 |
| MKH2-02-003-MB-1050 |  | Install Project Signs |  | 8d | 2026-02-25 A | 2026-02-28 A | MKH2-02-003-MB-1020 | 100% | 2026-03-11 | 2026-03-19 |  |  | Labor [1850 h] | MAK-01-MOB-1050 |

| ID | WBS | Activity | Duration | Start | Finish | Predecessors | Complete | Planned start | Planned finish | Resources | Old Activity ID - MK |
| --- | --- | --- | --- | --- | --- | --- | --- | --- | --- | --- | --- |
|  | PRELI | **PRELIMINARY SUBMITTALS** |  | 2026-02-15 | 2026-06-06 |  |  |  |  |  |  |
|  | P&S | **PREPARATIONS & SUBMITTAL BY CONTRACTORS** |  | 2026-02-15 | 2026-06-04 |  |  |  |  |  |  |
| MKH2-02-003-MB-1120 |  | Advance Payemnt Application | 8d | 2026-02-15 A | 2026-02-16 A | MKH2-02-003-MB-1000 | 100% | 2026-03-02 | 2026-03-10 | QA/QC Engineer [100 h] | MAK-01-PS-1000 |
| MKH2-02-003-MB-1130 |  | Performance bond as per the Conditions of Contract. | 8d | 2026-02-15 A | 2026-02-19 A | MKH2-02-003-MB-1000 | 100% | 2026-03-02 | 2026-03-10 | QA/QC Engineer [1150 h] | MAK-01-PS-1010 |
| MKH2-02-003-MB-1190 |  | Preparation and Submittal of Detailed Work Order Programme (Base line) | 8d | 2026-02-17 A | 2026-02-28 A | MKH2-02-003-MB-1000 | 100% | 2026-03-02 | 2026-03-10 | QA/QC Engineer [30 h] | MAK-01-PS-1070 |
| MKH2-02-003-MB-1200 |  | Preparation and Submittal of Project Execution Plan | 8d | 2026-02-17 A | 2026-02-18 A | MKH2-02-003-MB-1000 | 100% | 2026-03-02 | 2026-03-10 | QA/QC Engineer [30 h] | MAK-01-PS-1080 |
| MKH2-02-003-MB-1140 |  | Insurances as per the Conditions of Contract. | 8d | 2026-02-18 A | 2026-02-21 A | MKH2-02-003-MB-1000 | 100% | 2026-03-02 | 2026-03-10 | QA/QC Engineer [30 h] | MAK-01-PS-1020 |
| MKH2-02-003-MB-1150 |  | Contractor's Plant and Equipment Insurance. | 8d | 2026-02-18 A | 2026-02-21 A | MKH2-02-003-MB-1000 | 100% | 2026-03-02 | 2026-03-10 | QA/QC Engineer [30 h] | MAK-01-PS-1030 |
| MKH2-02-003-MB-1160 |  | Third Party liability Insurance including Insurance for Employer's Property other than Workmen's Compensation | 8d | 2026-02-18 A | 2026-02-21 A | MKH2-02-003-MB-1000 | 100% | 2026-03-02 | 2026-03-10 | QA/QC Engineer [30 h] | MAK-01-PS-1040 |
| MKH2-02-003-MB-1170 |  | Workmen's Compensation Employer's Liability Insurance. | 8d | 2026-02-18 A | 2026-02-21 A | MKH2-02-003-MB-1000 | 100% | 2026-03-02 | 2026-03-10 | QA/QC Engineer [30 h] | MAK-01-PS-1050 |
| MKH2-02-003-MB-1180 |  | Advance Payment Bond as per the Conditions of Contract. | 8d | 2026-02-18 A | 2026-02-21 A | MKH2-02-003-MB-1000 | 100% | 2026-03-02 | 2026-03-10 | QA/QC Engineer [30 h] | MAK-01-PS-1060 |
| MKH2-02-003-MB-1220 |  | Submission of Construction Safety & Environmental Management Plan | 8d | 2026-02-19 A | 2026-02-23 A | MKH2-02-003-MB-1000 | 100% | 2026-03-02 | 2026-03-10 | QA/QC Engineer [30 h] | MAK-01-PS-1100 |
| MKH2-02-003-MB-1210 |  | Submission of Contractor Project Quality Plan | 8d | 2026-02-23 A | 2026-02-25 A | MKH2-02-003-MB-1000 | 100% | 2026-03-02 | 2026-03-10 | QA/QC Engineer [30 h] | MAK-01-PS-1090 |
| MKH2-02-003-MB-1230 |  | Preparation and Submittal of Organization Chart | 8d | 2026-03-05 A | 2026-03-05 A | MKH2-02-003-MB-1000 | 100% | 2026-03-02 | 2026-03-10 | QA/QC Engineer [30 h] | MAK-01-PS-1110 |
| MKH2-02-003-MB-1240 |  | Preparation and Submittal of Communication Plan | 8d | 2026-06-03 A | 2026-06-04 A | MKH2-02-003-MB-1000 | 100% | 2026-06-10 | 2026-06-18 | QA/QC Engineer [30 h] | MAK-01-PS-1120 |
|  | APP | **APPROVALS BY EMPLOYERS** |  | 2026-02-17 | 2026-06-06 |  |  |  |  |  |  |
| MKH2-02-003-MB-1250 |  | Approval of Payemnt Application | 11d | 2026-02-17 A | 2026-02-18 A | MKH2-02-003-MB-1120 | 100% | 2026-03-11 | 2026-03-26 | Consultant Staff [16 h] | MAK-01-PS-1130 |
| MKH2-02-003-MB-1290 |  | Approval of Third Party liability Insurance including Insurance for Employer's Property other than Workmen's Compensan | 11d | 2026-02-18 A | 2026-02-26 A | MKH2-02-003-MB-1160 | 100% | 2026-03-11 | 2026-03-26 | Consultant Staff [16 h] | MAK-01-PS-1170 |
| MKH2-02-003-MB-1330 |  | Approval of Project Execution Plan | 11d | 2026-02-18 A | 2026-02-19 A | MKH2-02-003-MB-1200 | 100% | 2026-03-11 | 2026-03-26 | Consultant Staff [16 h] | MAK-01-PS-1210 |
| MKH2-02-003-MB-1260 |  | Approval of Performance bond as per the Conditions of Contract. | 11d | 2026-02-19 A | 2026-02-21 A | MKH2-02-003-MB-1130 | 100% | 2026-03-11 | 2026-03-26 | Consultant Staff [16 h] | MAK-01-PS-1140 |
| MKH2-02-003-MB-1270 |  | Approval of Insurances as per the Conditions of Contract. | 11d | 2026-02-22 A | 2026-02-26 A | MKH2-02-003-MB-1140 | 100% | 2026-03-11 | 2026-03-26 | Consultant Staff [16 h] | MAK-01-PS-1150 |
| MKH2-02-003-MB-1280 |  | Approval of Contractor's Plant and Equipment Insurance. | 11d | 2026-02-22 A | 2026-02-26 A | MKH2-02-003-MB-1150 | 100% | 2026-03-11 | 2026-03-26 | Consultant Staff [16 h] | MAK-01-PS-1160 |
| MKH2-02-003-MB-1300 |  | Approval of Workmen's Compensation Employer's Liability Insurance. | 11d | 2026-02-22 A | 2026-02-26 A | MKH2-02-003-MB-1170 | 100% | 2026-03-11 | 2026-03-26 | Consultant Staff [16 h] | MAK-01-PS-1180 |
| MKH2-02-003-MB-1310 |  | Approval of Advance Payment Bond as per the Conditions of Contract. | 11d | 2026-02-22 A | 2026-02-26 A | MKH2-02-003-MB-1180 | 100% | 2026-03-11 | 2026-03-26 | Consultant Staff [16 h] | MAK-01-PS-1190 |
| MKH2-02-003-MB-1350 |  | Approval of Construction Safety & Environmental Management Plan | 11d | 2026-02-24 A | 2026-03-09 A | MKH2-02-003-MB-1220 | 100% | 2026-03-18 | 2026-04-02 | Consultant Staff [16 h] | MAK-01-PS-1230 |
| MKH2-02-003-MB-1320 |  | Approval of Detailed Work Order Programme (Baseline) | 11d | 2026-02-28 A | 2026-03-01 A | MKH2-02-003-MB-1190 | 100% | 2026-03-02 | 2026-03-14 | Consultant Staff [16 h] | MAK-01-PS-1200 |
| MKH2-02-003-MB-1360 |  | Approval of Organization Chart | 11d | 2026-03-05 A | 2026-03-05 A | MKH2-02-003-MB-1230 | 100% | 2026-03-18 | 2026-04-02 | Consultant Staff [16 h] | MAK-01-PS-1240 |
| MKH2-02-003-MB-1340 |  | Approval of Contractor Project Quality Plan | 11d | 2026-03-16 A | 2026-03-29 A | MKH2-02-003-MB-1210 | 100% | 2026-04-08 | 2026-04-20 | Consultant Staff [16 h] | MAK-01-PS-1220 |
| MKH2-02-003-MB-1370 |  | Approval of Communication Plan | 11d | 2026-06-04 A | 2026-06-06 A | MKH2-02-003-MB-1240 | 100% | 2026-06-20 | 2026-07-01 | Consultant Staff [16 h] | MAK-01-PS-1250 |

| ID | WBS | Activity | Duration | Start | Finish | Predecessors | Complete | Planned start | Planned finish | Resources | Old Activity ID - MK | Shop Drawings |
| --- | --- | --- | --- | --- | --- | --- | --- | --- | --- | --- | --- | --- |
|  | ENGG | **ENGINEERING** |  | 2026-02-17 | 2026-07-22 |  |  |  |  |  |  |  |
|  | 1 | **SHOP DRAWINGS** |  | 2026-02-18 | 2026-06-07 |  |  |  |  |  |  |  |
|  | SUB | **SHOP DRAWINGS SUBMISSION** |  | 2026-02-18 | 2026-06-04 |  |  |  |  |  |  |  |
|  | ROAD | **SHOP DRAWING SUBMITTALS FOR ROAD WORKS** |  | 2026-02-18 | 2026-06-04 |  |  |  |  |  |  |  |
| MKH2-02-003-EN-1160 |  | Shop DWG Submittal for Signing & Marking Layout Plan | 8d | 2026-02-18 A | 2026-02-19 A | MKH2-02-003-EN-1090 | 100% | 2026-03-15 | 2026-03-26 | Draftsman [160 h] | MAK-01-EN-1070 | RD3 |
| MKH2-02-003-EN-1170 |  | Shop DWG Submittal for Standards Details | 8d | 2026-02-18 A | 2026-02-19 A | MKH2-02-003-EN-1090 | 100% | 2026-03-15 | 2026-03-26 | Draftsman [160 h] | MAK-01-EN-1080 | RD3 |
| MKH2-02-003-EN-1090 |  | Shop DWG Submittal for Topographic Survey | 8d | 2026-02-24 A | 2026-02-28 A | MKH2-02-003-MB-1380 | 100% | 2026-03-05 | 2026-03-14 | Draftsman [70 h] | MAK-01-EN-1000 | RD3 |
| MKH2-02-003-EN-1100 |  | Shop DWG Submittal for Road Layout Plan | 8d | 2026-02-25 A | 2026-02-28 A | MKH2-02-003-EN-1090 | 100% | 2026-03-15 | 2026-03-26 | Draftsman [160 h] | MAK-01-EN-1010 | RD3 |
| MKH2-02-003-EN-1120 |  | Shop DWG Submittal for Road Setting Out | 8d | 2026-02-25 A | 2026-02-28 A | MKH2-02-003-EN-1090 | 100% | 2026-03-15 | 2026-03-26 | Draftsman [160 h] | MAK-01-EN-1030 | RD3 |
| MKH2-02-003-EN-1130 |  | Shop DWG Submittal for Road Profiles | 8d | 2026-02-25 A | 2026-02-28 A | MKH2-02-003-EN-1090 | 100% | 2026-03-15 | 2026-03-26 | Draftsman [160 h] | MAK-01-EN-1040 | RD3 |
| MKH2-02-003-EN-1110 |  | Shop DWG Submittal for Typical Cross Section | 8d | 2026-02-26 A | 2026-02-28 A | MKH2-02-003-EN-1090 | 100% | 2026-03-18 | 2026-03-30 | Draftsman [160 h] | MAK-01-EN-1020 | RD3 |
| MKH2-02-003-EN-1140 |  | Shop DWG Submittal for Grading Layout Plan | 8d | 2026-02-26 A | 2026-02-28 A | MKH2-02-003-EN-1090 | 100% | 2026-03-18 | 2026-03-30 | Draftsman [160 h] | MAK-01-EN-1050 | RD3 |
| MKH2-02-003-EN-1150 |  | Shop DWG Submittal for Curb Setting Out Points | 8d | 2026-06-03 A | 2026-06-04 A | MKH2-02-003-EN-1090 | 100% | 2026-06-10 | 2026-06-18 | Draftsman [160 h] | MAK-01-EN-1060 | RD3 |
|  | ELE | **SHOP DRAWINGS SUBMITTALS FOR ELECTRICAL NETWORK** |  | 2026-06-03 | 2026-06-04 |  |  |  |  |  |  |  |
| MKH2-02-003-EN-1180 |  | Shop DWG Submittal for Low Voltage Network | 8d | 2026-06-03 A | 2026-06-04 A | MKH2-02-003-EN-1170 | 100% | 2026-06-10 | 2026-06-18 | Draftsman [160 h] | MAK-01-EN-1090 | EW3 |
| MKH2-02-003-EN-1190 |  | Shop DWG Submittal for Street Lighting | 8d | 2026-06-03 A | 2026-06-04 A | MKH2-02-003-EN-1170 | 100% | 2026-06-10 | 2026-06-18 | Draftsman [160 h] | MAK-01-EN-1100 | EW3 |
|  | EAR | **SHOP DRAWINGS SUBMITTALS FOR EARTHING SYSTEM** |  | 2026-06-03 | 2026-06-04 |  |  |  |  |  |  |  |
| MKH2-02-003-EN-1200 |  | Shop DWG Submittal for Earthing System | 8d | 2026-06-03 A | 2026-06-04 A | MKH2-02-003-EN-1190 | 100% | 2026-06-20 | 2026-06-28 | Draftsman [160 h] | MAK-01-EN-1110 | EW3 |
|  | 1 | **SHOP DRAWINGS SUBMITTALS FOR ROAD LIGHTING SYSTEM** |  | 2026-03-16 | 2026-03-18 |  |  |  |  |  |  |  |
| MKH2-02-003-EN-1210 |  | Shop DWG Submittal for Street Lighting General Arrangement | 8d | 2026-03-16 A | 2026-03-18 A | MKH2-02-003-EN-1180 | 100% | 2026-04-11 | 2026-04-19 | Draftsman [160 h] | MAK-01-EN-1120 | EW3 |
| MKH2-02-003-EN-1220 |  | Shop DWG Submittal for Street Lighting Network Layout | 8d | 2026-03-16 A | 2026-03-18 A | MKH2-02-003-EN-1180 | 100% | 2026-04-11 | 2026-04-19 | Draftsman [160 h] | MAK-01-EN-1130 | EW3 |
| MKH2-02-003-EN-1230 |  | Shop DWG Submittal for Street Lighting Details | 8d | 2026-03-16 A | 2026-03-18 A | MKH2-02-003-EN-1190 | 100% | 2026-04-11 | 2026-04-19 | Draftsman [160 h] | MAK-01-EN-1140 | EW3 |
| MKH2-02-003-EN-1240 |  | Shop DWG Submittal for Street Lighting Single Line Diagram | 8d | 2026-03-16 A | 2026-03-18 A | MKH2-02-003-EN-1190 | 100% | 2026-04-11 | 2026-04-19 | Draftsman [160 h] | MAK-01-EN-1150 | EW3 |
|  | DYK & OPNC | **SHOP DRAWINGS SUBMITTALS FOR OPENCHANNEL** |  | 2026-02-28 | 2026-06-04 |  |  |  |  |  |  |  |
| MKH2-02-003-EN-1250 |  | Shop DWG Submittal for Open Channel Layout Plan | 8d | 2026-02-28 A | 2026-03-02 A | MKH2-02-003-EN-1170, MKH2-02-003-MB-1080, MKH2-02-003-MB-1070 | 100% | 2026-03-28 | 2026-04-05 | Draftsman [160 h] | MAK-01-EN-1160 | OP3 |
| MKH2-02-003-EN-1260 |  | Shop DWG Submittal for Typical Cross Section | 8d | 2026-02-28 A | 2026-03-02 A | MKH2-02-003-EN-1170 | 100% | 2026-03-28 | 2026-04-05 | Draftsman [160 h] | MAK-01-EN-1170 | OP3 |
| MKH2-02-003-EN-1270 |  | Shop DWG Submittal for Open Channel Profiles | 8d | 2026-02-28 A | 2026-03-02 A | MKH2-02-003-EN-1170 | 100% | 2026-03-28 | 2026-04-05 | Draftsman [160 h] | MAK-01-EN-1180 | OP3 |
| MKH2-02-003-EN-1280 |  | Shop DWG Submittal for Grading Layout Plan | 8d | 2026-06-03 A | 2026-06-04 A | MKH2-02-003-EN-1170 | 100% | 2026-06-10 | 2026-06-18 | Draftsman [160 h] | MAK-01-EN-1190 | OP3 |
| MKH2-02-003-EN-1290 |  | Shop DWG Submittal for Standards Details | 8d | 2026-06-03 A | 2026-06-04 A | MKH2-02-003-EN-1170 | 100% | 2026-06-10 | 2026-06-18 | Draftsman [160 h] | MAK-01-EN-1200 | OP3 |

| ID | WBS | Activity | Duration | Start | Finish | Predecessors | Complete | Planned start | Planned finish | Resources | Old Activity ID - MK | Shop Drawings |
| --- | --- | --- | --- | --- | --- | --- | --- | --- | --- | --- | --- | --- |
|  | APP | **SHOP DRAWINGS APPROVALS** |  | 2026-02-18 | 2026-06-07 |  |  |  |  |  |  |  |
|  | ROAD | **SHOP DRAWING APPROVALS FOR ROAD WORKS** |  | 2026-02-18 | 2026-06-07 |  |  |  |  |  |  |  |
| MKH2-02-003-EN-1370 |  | Shop DWG Approval for Signing & Marking Layout Plan | 7d | 2026-02-18 A | 2026-02-19 A | MKH2-02-003-EN-1160 | 100% | 2026-04-08 | 2026-04-15 | Draftsman [112 h]; Consultant Staff [112 h] | MAK-01-EN-1280 | RD3 |
| MKH2-02-003-EN-1380 |  | Shop DWG Approval for Standards Details | 7d | 2026-02-19 A | 2026-02-19 A | MKH2-02-003-EN-1170 | 100% | 2026-04-08 | 2026-04-15 | Draftsman [112 h]; Consultant Staff [112 h] | MAK-01-EN-1290 | RD3 |
| MKH2-02-003-EN-1310 |  | Shop DWG Approval for Road Layout Plan | 7d | 2026-03-01 A | 2026-03-08 A | MKH2-02-003-EN-1100 | 100% | 2026-03-09 | 2026-03-16 | Draftsman [112 h]; Consultant Staff [112 h] | MAK-01-EN-1220 | RD3 |
| MKH2-02-003-EN-1340 |  | Shop DWG Approval for Road Profiles | 7d | 2026-03-01 A | 2026-03-08 A | MKH2-02-003-EN-1130 | 100% | 2026-03-09 | 2026-03-16 | Draftsman [112 h]; Consultant Staff [112 h] | MAK-01-EN-1250 | RD3 |
| MKH2-02-003-EN-1300 |  | Shop DWG Approval for Topographic Survey | 7d | 2026-04-22 A | 2026-04-23 A | MKH2-02-003-EN-1090 | 100% | 2026-04-29 | 2026-05-06 | Draftsman [112 h]; Consultant Staff [112 h] | MAK-01-EN-1210 | RD3 |
| MKH2-02-003-EN-1320 |  | Shop DWG Approval for Typical Cross Section | 7d | 2026-06-06 A | 2026-06-07 A | MKH2-02-003-EN-1110 | 100% | 2026-06-10 | 2026-06-17 | Draftsman [112 h]; Consultant Staff [112 h] | MAK-01-EN-1230 | RD3 |
| MKH2-02-003-EN-1330 |  | Shop DWG Approval for Road Setting Out | 7d | 2026-06-06 A | 2026-06-07 A | MKH2-02-003-EN-1120 | 100% | 2026-06-10 | 2026-06-17 | Draftsman [112 h]; Consultant Staff [112 h] | MAK-01-EN-1240 | RD3 |
| MKH2-02-003-EN-1350 |  | Shop DWG Approval for Grading Layout Plan | 7d | 2026-06-06 A | 2026-06-07 A | MKH2-02-003-EN-1140 | 100% | 2026-06-10 | 2026-06-17 | Draftsman [112 h]; Consultant Staff [112 h] | MAK-01-EN-1260 | RD3 |
| MKH2-02-003-EN-1360 |  | Shop DWG Approval for Curb Setting Out Points | 7d | 2026-06-06 A | 2026-06-07 A | MKH2-02-003-EN-1150 | 100% | 2026-06-20 | 2026-06-27 | Draftsman [112 h]; Consultant Staff [112 h] | MAK-01-EN-1270 | RD3 |
|  | ELE | **SHOP DRAWINGS APPROVALS FOR ELECTRICAL NETWORK** |  | 2026-06-04 | 2026-06-06 |  |  |  |  |  |  |  |
| MKH2-02-003-EN-1390 |  | Shop DWG Approval for Low Voltage Network | 7d | 2026-06-04 A | 2026-06-06 A | MKH2-02-003-EN-1180 | 100% | 2026-06-20 | 2026-06-27 | Draftsman [112 h]; Consultant Staff [112 h] | MAK-01-EN-1300 | EW3 |
| MKH2-02-003-EN-1400 |  | Shop DWG Approval for Street Lighting | 7d | 2026-06-04 A | 2026-06-06 A | MKH2-02-003-EN-1190 | 100% | 2026-06-20 | 2026-06-27 | Draftsman [112 h]; Consultant Staff [112 h] | MAK-01-EN-1310 | EW3 |
|  | EAR | **SHOP DRAWINGS APPROVALS FOR EARTHING SYSTEM** |  | 2026-06-04 | 2026-06-06 |  |  |  |  |  |  |  |
| MKH2-02-003-EN-1410 |  | Shop DWG Approval for Earthing System | 7d | 2026-06-04 A | 2026-06-06 A | MKH2-02-003-EN-1200 | 100% | 2026-06-29 | 2026-07-06 | Draftsman [112 h]; Consultant Staff [112 h] | MAK-01-EN-1320 | EW3 |
|  | 1 | **SHOP DRAWINGS APPROVALS FOR ROAD LIGHTING SYSTEM** |  | 2026-03-18 | 2026-04-09 |  |  |  |  |  |  |  |
| MKH2-02-003-EN-1420 |  | Shop DWG Approval for Street Lighting General Arrangement | 8d | 2026-03-18 A | 2026-03-30 A | MKH2-02-003-EN-1210 | 100% | 2026-04-18 | 2026-04-26 | Draftsman [128 h]; Consultant Staff [128 h] | MAK-01-EN-1330 | EW3 |
| MKH2-02-003-EN-1440 |  | Shop DWG Approval for Street Lighting Details | 8d | 2026-03-18 A | 2026-03-30 A | MKH2-02-003-EN-1230 | 100% | 2026-04-18 | 2026-04-26 | Draftsman [128 h]; Consultant Staff [128 h] | MAK-01-EN-1350 | EW3 |
| MKH2-02-003-EN-1450 |  | Shop DWG Approval for Street Lighting Single Line Diagram | 8d | 2026-03-18 A | 2026-03-30 A | MKH2-02-003-EN-1240 | 100% | 2026-04-18 | 2026-04-26 | Draftsman [128 h]; Consultant Staff [128 h] | MAK-01-EN-1360 | EW3 |
| MKH2-02-003-EN-1430 |  | Shop DWG Approval for Street Lighting Network Layout | 8d | 2026-04-08 A | 2026-04-09 A | MKH2-02-003-EN-1220 | 100% | 2026-05-02 | 2026-05-10 | Draftsman [128 h]; Consultant Staff [128 h] | MAK-01-EN-1340 | EW3 |
|  | DYK & OPNC | **SHOP DRAWINGS APPROVALS FOR OPENCHANNEL** |  | 2026-03-02 | 2026-06-07 |  |  |  |  |  |  |  |
| MKH2-02-003-EN-1460 |  | Shop DWG Approval for Open Channel Layout Plan | 8d | 2026-03-02 A | 2026-03-03 A | MKH2-02-003-EN-1250 | 100% | 2026-03-18 | 2026-03-30 | Draftsman [128 h]; Consultant Staff [128 h] | MAK-01-EN-1370 | OP3 |
| MKH2-02-003-EN-1470 |  | Shop DWG Approval for Typical Cross Section | 8d | 2026-03-02 A | 2026-03-02 A | MKH2-02-003-EN-1260 | 100% | 2026-04-08 | 2026-04-16 | Draftsman [128 h]; Consultant Staff [128 h] | MAK-01-EN-1380 | OP3 |
| MKH2-02-003-EN-1480 |  | Shop DWG Approval for Open Channel Profiles | 8d | 2026-03-02 A | 2026-03-09 A | MKH2-02-003-EN-1270 | 100% | 2026-03-18 | 2026-03-30 | Draftsman [128 h]; Consultant Staff [128 h] | MAK-01-EN-1390 | OP3 |
| MKH2-02-003-EN-1490 |  | Shop DWG Approval for Grading Layout Plan | 8d | 2026-06-06 A | 2026-06-07 A | MKH2-02-003-EN-1280 | 100% | 2026-06-20 | 2026-06-28 | Draftsman [128 h]; Consultant Staff [128 h] | MAK-01-EN-1400 | OP3 |
| MKH2-02-003-EN-1500 |  | Shop DWG Approval for Standards Details | 8d | 2026-06-06 A | 2026-06-07 A | MKH2-02-003-EN-1290 | 100% | 2026-06-20 | 2026-06-28 | Draftsman [128 h]; Consultant Staff [128 h] | MAK-01-EN-1410 | OP3 |

| ID | WBS | Activity | Duration | Start | Finish | Predecessors | Complete | Planned start | Planned finish | Resources | Old Activity ID - MK |
| --- | --- | --- | --- | --- | --- | --- | --- | --- | --- | --- | --- |
|  | 2 | **METHOD STATEMENTS** |  | 2026-02-17 | 2026-07-22 |  |  |  |  |  |  |
|  | 1 | **METHOD STATEMENT SUBMITTAL** |  | 2026-02-17 | 2026-07-21 |  |  |  |  |  |  |
|  | 4 | **Civil Works** |  | 2026-02-17 | 2026-07-21 |  |  |  |  |  |  |
|  | 1 | **Road Works** |  | 2026-02-17 | 2026-07-21 |  |  |  |  |  |  |
| MKH2-02-003-EN-1010 |  | Preparation & Submission of Method Statement for Earthwork | 14d | 2026-02-17 A | 2026-02-18 A | MKH2-02-003-MB-1000 | 100% | 2026-03-05 | 2026-03-24 | QA/QC Engineer [120 h] | A1010 |
| MKH2-02-003-EN-1020 |  | Preparation & Submission of Method Statement for Road Paving (Soil & Asphalt) | 14d | 2026-02-23 A | 2026-02-25 A | MKH2-02-003-MB-1000 | 100% | 2026-03-05 | 2026-03-24 | QA/QC Engineer [120 h] | A1020 |
| MKH2-02-003-EN-1000 |  | Preparation & Submission of Method Statement for Demolition Works | 14d | 2026-03-01 A | 2026-03-08 A | MKH2-02-003-MB-1000 | 100% | 2026-03-09 | 2026-03-28 | QA/QC Engineer [120 h] | A1000 |
| MKH2-02-003-EN-1070 |  | Preparation & Submission of Method Statement for Road Finishing | 14d | 2026-03-23 A | 2026-03-26 A | MKH2-02-003-MB-1000 | 100% | 2026-04-01 | 2026-04-16 | QA/QC Engineer [120 h] |  |
| MKH2-02-003-EN-1060 |  | Preparation & Submission of Method Statement for Traffic Signal & Saher Camera | 14d | 2026-05-14 A | 2026-07-21 A | MKH2-02-003-MB-1000 | 100% | 2026-06-10 | 2026-06-25 | QA/QC Engineer [120 h] |  |
|  | 2 | **Open Drain Channel** |  | 2026-04-20 | 2026-04-21 |  |  |  |  |  |  |
| MKH2-02-003-EN-2230 |  | Preparation & Submission of Method Statement for Riprap Construction | 14d | 2026-04-20 A | 2026-04-21 A | MKH2-02-003-MB-1000 | 100% | 2026-04-29 | 2026-05-14 | QA/QC Engineer [120 h] | A1000 |
|  | 3 | **Box Culvert** |  | 2026-03-01 | 2026-03-08 |  |  |  |  |  |  |
| MKH2-02-003-EN-2330 |  | Preparation & Submission of Method Statement for Box Culvert | 14d | 2026-03-01 A | 2026-03-08 A | MKH2-02-003-MB-1000 | 100% | 2026-03-09 | 2026-03-28 | QA/QC Engineer [120 h] | A1020 |
|  | 5 | **Electrical Works** |  | 2026-02-25 | 2026-06-04 |  |  |  |  |  |  |
|  | 1 | **Street Lighting Works** |  | 2026-02-25 | 2026-06-04 |  |  |  |  |  |  |
| MKH2-02-003-EN-5000 |  | Preparation & Submission of Method Statement for LV Duct Bank | 14d | 2026-02-25 A | 2026-03-09 A | MKH2-02-003-MB-1000, MKH2-02-003-EN-2330 | 100% | 2026-03-18 | 2026-04-06 | QA/QC Engineer [120 h] |  |
| MKH2-02-003-EN-5010 |  | Preparation & Submission of Method Statement for LV Network | 14d | 2026-04-06 A | 2026-04-13 A | MKH2-02-003-MB-1000, MKH2-02-003-EN-2330 | 100% | 2026-04-22 | 2026-05-07 | QA/QC Engineer [120 h] |  |
| MKH2-02-003-EN-5020 |  | Preparation & Submission of Method Statement for Lighting Poles Installation | 14d | 2026-06-03 A | 2026-06-04 A | MKH2-02-003-MB-1000, MKH2-02-003-EN-2330 | 100% | 2026-06-10 | 2026-06-25 | QA/QC Engineer [120 h] |  |
|  | 2 | **METHOD STATEMENT APPROVAL** |  | 2026-02-19 | 2026-07-22 |  |  |  |  |  |  |
|  | 4 | **Civil Works** |  | 2026-02-19 | 2026-07-22 |  |  |  |  |  |  |
|  | 1 | **Road Works** |  | 2026-02-19 | 2026-07-22 |  |  |  |  |  |  |
| MKH2-02-003-EN-5040 |  | Approval of Method Statement for Earthwork | 12d | 2026-02-19 A | 2026-02-23 A | MKH2-02-003-EN-1010 | 100% | 2026-03-25 | 2026-04-07 | Consultant Staff [120 h] | A1010 |
| MKH2-02-003-EN-5030 |  | Approval of Method Statement for Demolition Works | 14d | 2026-03-25 A | 2026-03-28 A | MKH2-02-003-EN-1000 | 100% | 2026-04-01 | 2026-04-16 | Consultant Staff [120 h] | A1000 |
| MKH2-02-003-EN-5050 |  | Approval of Method Statement for Road Paving (Soil & Asphalt) | 14d | 2026-03-25 A | 2026-03-28 A | MKH2-02-003-EN-1020 | 100% | 2026-04-08 | 2026-04-23 | Consultant Staff [120 h] | A1020 |
| MKH2-02-003-EN-5070 |  | Approval of Method Statement for Road Finishing | 14d | 2026-06-16 A | 2026-06-16 A | MKH2-02-003-EN-1070 | 100% | 2026-07-08 | 2026-07-23 | Consultant Staff [120 h] |  |
| MKH2-02-003-EN-5060 |  | Approval of Method Statement for Traffic Signal & Saher Camera | 14d | 2026-07-21 A | 2026-07-22 A | MKH2-02-003-EN-1060 | 100% | 2026-07-29 | 2026-08-13 | Consultant Staff [120 h] |  |

| ID | WBS | Activity | Duration | Start | Finish | Predecessors | Complete | Planned start | Planned finish | Resources | Old Activity ID - MK |
| --- | --- | --- | --- | --- | --- | --- | --- | --- | --- | --- | --- |
|  | 2 | **Open Drain Channel** |  | 2026-06-15 | 2026-06-15 |  |  |  |  |  |  |
| MKH2-02-003-EN-5080 |  | Approval of Method Statement for Riprap Construction | 14d | 2026-06-15 A | 2026-06-15 A | MKH2-02-003-EN-2230 | 100% | 2026-07-08 | 2026-07-23 | Consultant Staff [120 h] | A1000 |
|  | 3 | **Box Culvert** |  | 2026-03-11 | 2026-03-29 |  |  |  |  |  |  |
| MKH2-02-003-EN-5090 |  | Approval of Method Statement for Box Culvert | 14d | 2026-03-11 A | 2026-03-29 A | MKH2-02-003-EN-2330 | 100% | 2026-04-08 | 2026-04-23 | Consultant Staff [120 h] | A1020 |
|  | 5 | **Electrical Works** |  | 2026-03-25 | 2026-06-15 |  |  |  |  |  |  |
|  | 1 | **Street Lighting Works** |  | 2026-03-25 | 2026-06-15 |  |  |  |  |  |  |
| MKH2-02-003-EN-5100 |  | Approval of Method Statement for LV Duct Bank | 14d | 2026-03-25 A | 2026-03-28 A | MKH2-02-003-EN-5000 | 100% | 2026-04-08 | 2026-04-23 | Consultant Staff [120 h] |  |
| MKH2-02-003-EN-5110 |  | Approval of Method Statement for LV Network | 14d | 2026-05-19 A | 2026-06-15 A | MKH2-02-003-EN-5010 | 100% | 2026-07-08 | 2026-07-23 | Consultant Staff [120 h] |  |
| MKH2-02-003-EN-5120 |  | Approval of Method Statement for Lighting Poles Installation | 14d | 2026-06-04 A | 2026-06-06 A | MKH2-02-003-EN-5020 | 100% | 2026-06-27 | 2026-07-12 | Consultant Staff [120 h] |  |
|  | PREQ | **PRE-QUALIFICATION & MATERIAL** |  | 2026-03-02 | 2026-06-06 |  |  |  |  |  |  |
|  | PRE | **PRE-QUALIFICATION** |  | 2026-03-02 | 2026-03-29 |  |  |  |  |  |  |
|  | ROAD | **ROAD WORKS-CIVIL** |  | 2026-03-03 | 2026-03-29 |  |  |  |  |  |  |
|  | STEEL | **STEEL REINFORCEMENT** |  | 2026-03-03 | 2026-03-04 |  |  |  |  |  |  |
| MKH2-02-003-EN-1510 |  | Pre-Qualification Submittal for Steel Reinforcement | 5d | 2026-03-03 A | 2026-03-04 A | MKH2-02-003-MB-1340, MKH2-02-003-MS-1000, MKH2-02-003-MS-1010 | 100% | 2026-03-31 | 2026-04-05 | QA/QC Engineer [160 h] | MAK-01-SB& AP-1000 |
| MKH2-02-003-EN-1520 |  | Pre-Qualification Approval for Steel Reinforcement | 6d | 2026-03-03 A | 2026-03-04 A | MKH2-02-003-EN-1510 | 100% | 2026-04-06 | 2026-04-12 | Consultant Staff [1280 h] | MAK-01-SB& AP-1010 |
|  | RMC | **READY MIX CONCRETE** |  | 2026-03-29 | 2026-03-29 |  |  |  |  |  |  |
| MKH2-02-003-EN-1530 |  | Pre-Qualification Submittal for Ready Mixed Concrete | 5d | 2026-03-29 A | 2026-03-29 A | MKH2-02-003-MB-1340 | 100% | 2026-04-21 | 2026-04-26 | QA/QC Engineer [160 h] | MAK-01-SB& AP-1020 |
| MKH2-02-003-EN-1540 |  | Pre-Qualification Approval for Ready Mixed Concrete | 6d | 2026-03-29 A | 2026-03-29 A | MKH2-02-003-EN-1530 | 100% | 2026-04-27 | 2026-05-03 | Consultant Staff [160 h] | MAK-01-SB& AP-1030 |
|  | WP | **WATER PROOFING** |  | 2026-03-10 | 2026-03-11 |  |  |  |  |  |  |
| MKH2-02-003-EN-1550 |  | Pre-Qualification Submittal for Water Proof ing | 5d | 2026-03-10 A | 2026-03-11 A | MKH2-02-003-MB-1340 | 100% | 2026-04-14 | 2026-04-19 | QA/QC Engineer [160 h] | MAK-01-SB& AP-1040 |
| MKH2-02-003-EN-1560 |  | Pre-Qualification Approval for Water Proofing | 6d | 2026-03-11 A | 2026-03-11 A | MKH2-02-003-EN-1550 | 100% | 2026-04-20 | 2026-04-26 | Consultant Staff [160 h] | MAK-01-SB& AP-1050 |
|  | ABC | **AGGREGATE BASE COURSE** |  | 2026-03-17 | 2026-03-18 |  |  |  |  |  |  |
| MKH2-02-003-EN-1570 |  | Pre-Qualification Submittal for Aggregate Base Cource | 5d | 2026-03-17 A | 2026-03-18 A | MKH2-02-003-MB-1340 | 100% | 2026-04-14 | 2026-04-19 | QA/QC Engineer [160 h] | MAK-01-SB& AP-1060 |
| MKH2-02-003-EN-1580 |  | Pre-Qualification Approval for Aggregate Base Cource | 6d | 2026-03-18 A | 2026-03-18 A | MKH2-02-003-EN-1570 | 100% | 2026-04-20 | 2026-04-26 | Consultant Staff [160 h] | MAK-01-SB& AP-1070 |

| ID | WBS | Activity | Duration | Start | Finish | Predecessors | Complete | Planned start | Planned finish | Resources | Old Activity ID - MK |
| --- | --- | --- | --- | --- | --- | --- | --- | --- | --- | --- | --- |
|  | BBC& BWC | **BITU,INOUS BASE & WEARING COURSE** |  | 2026-03-08 | 2026-03-24 |  |  |  |  |  |  |
| MKH2-02-003-EN-1590 |  | Pre-Qualification Submittal for Bituminous Base & Wearing Cource | 5d | 2026-03-08 A | 2026-03-09 A | MKH2-02-003-MB-1340 | 100% | 2026-04-04 | 2026-04-08 | QA/QC Engineer [160 h] | MAK-01-SB& AP-1080 |
| MKH2-02-003-EN-1600 |  | Pre-Qualification Approval for Bituminous Base & Wearing Cource | 6d | 2026-03-10 A | 2026-03-24 A | MKH2-02-003-EN-1590 | 100% | 2026-04-14 | 2026-04-20 | Consultant Staff [160 h] | MAK-01-SB& AP-1090 |
|  | CURB | **PRE-CAST CONCRETE CURBS** |  | 2026-03-10 | 2026-03-10 |  |  |  |  |  |  |
| MKH2-02-003-EN-1610 |  | Pre-Qualification Submittal for Precast Concrete Curb | 5d | 2026-03-10 A | 2026-03-10 A | MKH2-02-003-MB-1340 | 100% | 2026-04-04 | 2026-04-08 | QA/QC Engineer [160 h] | MAK-01-SB& AP-1100 |
| MKH2-02-003-EN-1620 |  | Pre-Qualification Approval for Precast Concrete Curb | 6d | 2026-03-10 A | 2026-03-10 A | MKH2-02-003-EN-1610 | 100% | 2026-04-09 | 2026-04-15 | Consultant Staff [160 h] | MAK-01-SB& AP-1110 |
|  | INTR | **INTERLOCKING PAVING BLOCKS** |  | 2026-03-10 | 2026-03-10 |  |  |  |  |  |  |
| MKH2-02-003-EN-1630 |  | Pre-Qualification Submittal for Interlocking Block Pavers | 5d | 2026-03-10 A | 2026-03-10 A | MKH2-02-003-MB-1340 | 100% | 2026-04-04 | 2026-04-08 | QA/QC Engineer [160 h] | MAK-01-SB& AP-1120 |
| MKH2-02-003-EN-1640 |  | Pre-Qualification Approval for Interlocking Block Pavers | 6d | 2026-03-10 A | 2026-03-10 A | MKH2-02-003-EN-1630 | 100% | 2026-04-09 | 2026-04-15 | Consultant Staff [160 h] | MAK-01-SB& AP-1130 |
|  | MARK | **PAVEMENT MARKING** |  | 2026-03-10 | 2026-03-12 |  |  |  |  |  |  |
| MKH2-02-003-EN-1650 |  | Pre-Qualification Submittal for Pavement Markings | 5d | 2026-03-10 A | 2026-03-11 A | MKH2-02-003-MB-1340 | 100% | 2026-04-04 | 2026-04-08 | QA/QC Engineer [160 h] | MAK-01-SB& AP-1140 |
| MKH2-02-003-EN-1660 |  | Pre-Qualification Approval for Pavement Markings | 6d | 2026-03-11 A | 2026-03-12 A | MKH2-02-003-EN-1650 | 100% | 2026-04-14 | 2026-04-20 | Consultant Staff [160 h] | MAK-01-SB& AP-1150 |
|  | SIGN | **TRAFFIC SIGNS** |  | 2026-03-11 | 2026-03-14 |  |  |  |  |  |  |
| MKH2-02-003-EN-1670 |  | Pre-Qualification Submittal for Traffic Signs | 5d | 2026-03-11 A | 2026-03-14 A | MKH2-02-003-MB-1340 | 100% | 2026-04-04 | 2026-04-08 | QA/QC Engineer [160 h] | MAK-01-SB& AP-1160 |
| MKH2-02-003-EN-1680 |  | Pre-Qualification Approval for Traffic Signs | 6d | 2026-03-11 A | 2026-03-14 A | MKH2-02-003-EN-1670 | 100% | 2026-04-09 | 2026-04-15 | Consultant Staff [160 h] | MAK-01-SB& AP-1170 |
|  | ELE | **ELECTRICAL NETWORK** |  | 2026-03-02 | 2026-03-15 |  |  |  |  |  |  |
|  | PIPE | **PIPE FOR DUCT** |  | 2026-03-14 | 2026-03-15 |  |  |  |  |  |  |
| MKH2-02-003-EN-1690 |  | Pre-Qualification Submittal for Pipe for the Duct | 5d | 2026-03-14 A | 2026-03-15 A | MKH2-02-003-MB-1340 | 100% | 2026-04-04 | 2026-04-08 | QA/QC Engineer [150 h] | MAK-01-SB& AP-1180 |
| MKH2-02-003-EN-1700 |  | Pre-Qualification Approval for Pipe for the Duct | 6d | 2026-03-15 A | 2026-03-15 A | MKH2-02-003-EN-1690 | 100% | 2026-04-14 | 2026-04-20 | Consultant Staff [150 h] | MAK-01-SB& AP-1190 |
|  | LV-CAB | **LOW VOLTAGE CABLES** |  | 2026-03-02 | 2026-03-07 |  |  |  |  |  |  |
| MKH2-02-003-EN-1710 |  | Pre-Qualification Submittal for Low Voltage Cables | 5d | 2026-03-02 A | 2026-03-05 A | MKH2-02-003-MB-1340 | 100% | 2026-03-25 | 2026-03-30 | QA/QC Engineer [150 h] | MAK-01-SB& AP-1200 |
| MKH2-02-003-EN-1720 |  | Pre-Qualification Approval for Low Voltage Cables | 6d | 2026-03-05 A | 2026-03-07 A | MKH2-02-003-EN-1710 | 100% | 2026-03-31 | 2026-04-06 | Consultant Staff [150 h] | MAK-01-SB& AP-1210 |
|  | EARTH | **EARTHING SYSTEM** |  | 2026-03-12 | 2026-03-15 |  |  |  |  |  |  |
| MKH2-02-003-EN-1730 |  | Pre-Qualification Submittal for Earthing System | 5d | 2026-03-12 A | 2026-03-14 A | MKH2-02-003-MB-1340 | 100% | 2026-04-04 | 2026-04-08 | QA/QC Engineer [150 h] | MAK-01-SB& AP-1220 |
| MKH2-02-003-EN-1740 |  | Pre-Qualification Approval for Earthing System | 6d | 2026-03-14 A | 2026-03-15 A | MKH2-02-003-EN-1730 | 100% | 2026-04-14 | 2026-04-20 | Consultant Staff [150 h] | MAK-01-SB& AP-1230 |

| ID | WBS | Activity | Duration | Start | Finish | Predecessors | Complete | Planned start | Planned finish | Resources | Cost | Actual cost | Old Activity ID - MK |
| --- | --- | --- | --- | --- | --- | --- | --- | --- | --- | --- | --- | --- | --- |
|  | LV-DP | **LOW VOLTAGE DISTRIBUTION PANNEL** |  | 2026-03-09 | 2026-03-11 |  |  |  |  |  |  |  |  |
| MKH2-02-003-EN-1750 |  | Pre-Qualification Submittal for Distribution Panel | 5d | 2026-03-09 A | 2026-03-09 A | MKH2-02-003-MB-1340 | 100% | 2026-04-04 | 2026-04-08 | QA/QC Engineer [150 h] |  |  | MAK-01-SB& AP-1240 |
| MKH2-02-003-EN-1760 |  | Pre-Qualification Approval for Distribution Panel | 6d | 2026-03-09 A | 2026-03-11 A | MKH2-02-003-EN-1750 | 100% | 2026-04-09 | 2026-04-15 | Consultant Staff [150 h] |  |  | MAK-01-SB& AP-1250 |
|  | LIGH | **LIGHTING POLES** |  | 2026-03-02 | 2026-03-08 |  |  |  |  |  |  |  |  |
| MKH2-02-003-EN-1770 |  | Pre-Qualification Submittal for Lighting poles | 5d | 2026-03-02 A | 2026-03-05 A | MKH2-02-003-MB-1330 | 100% | 2026-03-09 | 2026-03-14 | QA/QC Engineer [150 h] |  |  | MAK-01-SB& AP-1260 |
| MKH2-02-003-EN-1780 |  | Pre-Qualification Approval for Lighting poles | 6d | 2026-03-05 A | 2026-03-08 A | MKH2-02-003-EN-1770 | 100% | 2026-03-18 | 2026-03-28 | Consultant Staff [150 h] |  |  | MAK-01-SB& AP-1270 |
|  | FID & PAN | **LIGHTINH PANNELS/FEEDER PILLERS** |  | 2026-03-09 | 2026-03-11 |  |  |  |  |  |  |  |  |
| MKH2-02-003-EN-1790 |  | Pre-Qualification Submittal for Lighting panels/Feeder Pillers | 5d | 2026-03-09 A | 2026-03-09 A | MKH2-02-003-MB-1340 | 100% | 2026-04-04 | 2026-04-08 | QA/QC Engineer [150 h] |  |  | MAK-01-SB& AP-1280 |
| MKH2-02-003-EN-1800 |  | Pre-Qualification Approval for Lighting panels/Feeder Pillers | 6d | 2026-03-09 A | 2026-03-11 A | MKH2-02-003-EN-1790 | 100% | 2026-04-09 | 2026-04-15 | Consultant Staff [150 h] |  |  | MAK-01-SB& AP-1290 |
|  | LUM | **STREET LIGHTING LUMINAIRE** |  | 2026-03-02 | 2026-03-08 |  |  |  |  |  |  |  |  |
| MKH2-02-003-EN-1810 |  | Pre-Qualification Submittal for Lighting Luminaire | 5d | 2026-03-02 A | 2026-03-05 A | MKH2-02-003-MB-1340 | 100% | 2026-03-25 | 2026-03-30 | QA/QC Engineer [150 h] |  |  | MAK-01-SB& AP-1300 |
| MKH2-02-003-EN-1820 |  | Pre-Qualification Approval for Lighting Luminaire | 6d | 2026-03-05 A | 2026-03-08 A | MKH2-02-003-EN-1810 | 100% | 2026-04-04 | 2026-04-09 | Consultant Staff [150 h] |  |  | MAK-01-SB& AP-1310 |
|  | STROM | **OPPEN CHANNEL** |  | 2026-03-08 | 2026-03-11 |  |  |  |  |  |  |  |  |
|  | RIPRAP | **RIPRAP MATERIAL** |  | 2026-03-08 | 2026-03-11 |  |  |  |  |  |  |  |  |
| MKH2-02-003-EN-1830 |  | Pre-Qualification Submittal for RIP-RAP Material | 5d | 2026-03-08 A | 2026-03-09 A | MKH2-02-003-MB-1340 | 100% | 2026-04-14 | 2026-04-19 | QA/QC Engineer [150 h] |  |  | MAK-01-SB& AP-1320 |
| MKH2-02-003-EN-1840 |  | Pre-Qualification Approval for RIP-RAP Material | 6d | 2026-03-09 A | 2026-03-11 A | MKH2-02-003-EN-1830 | 100% | 2026-04-20 | 2026-04-26 | Consultant Staff [150 h] |  |  | MAK-01-SB& AP-1330 |
|  | ACESSO | **ACCESSORIES FOR RIPRAP** |  | 2026-03-08 | 2026-03-11 |  |  |  |  |  |  |  |  |
| MKH2-02-003-EN-1850 |  | Pre-Qualification Submittal for Accessories for RIP-RAP | 5d | 2026-03-08 A | 2026-03-09 A | MKH2-02-003-MB-1340 | 100% | 2026-04-14 | 2026-04-19 | QA/QC Engineer [150 h] |  |  | MAK-01-SB& AP-1340 |
| MKH2-02-003-EN-1860 |  | Pre-Qualification Approval for Accessories for RIP-RAP | 6d | 2026-03-09 A | 2026-03-11 A | MKH2-02-003-EN-1850 | 100% | 2026-04-20 | 2026-04-26 | Consultant Staff [150 h] |  |  | MAK-01-SB& AP-1350 |
|  | MAT | **MATERIAL SUBMITTAL** |  | 2026-03-08 | 2026-06-06 |  |  |  |  |  |  |  |  |
|  | ROAD | **ROAD WORKS-CIVIL** |  | 2026-03-08 | 2026-05-16 |  |  |  |  |  |  |  |  |
|  | STEEL | **STEEL REINFORCEMENT** |  | 2026-03-09 | 2026-03-09 |  |  |  |  |  |  |  |  |
| MKH2-02-003-EN-1870 |  | Material Submittal for Steel Reinforcement | 5d | 2026-03-09 A | 2026-03-09 A | MKH2-02-003-EN-1520 | 100% | 2026-04-13 | 2026-04-18 | QA/QC Engineer [150 h] |  |  | MAK-01-SB& AP-1360 |
| MKH2-02-003-EN-1880 |  | Material Approval for Steel Reinforcement | 6d | 2026-03-09 A | 2026-03-09 A | MKH2-02-003-EN-1870 | 100% | 2026-04-23 | 2026-04-29 | Cost for Engg [1] | 86,709.19 | 86,709.19 | MAK-01-SB& AP-1370 |

| ID | WBS | Activity | Duration | Start | Finish | Predecessors | Complete | Planned start | Planned finish | Resources | Cost | Actual cost | Old Activity ID - MK |
| --- | --- | --- | --- | --- | --- | --- | --- | --- | --- | --- | --- | --- | --- |
|  | RMC | **READY MIX CONCRETE** |  | 2026-03-29 | 2026-03-29 |  |  |  |  |  |  |  |  |
| MKH2-02-003-EN-1890 |  | Material Submittal Submittal for Ready Mixed Concrete | 5d | 2026-03-29 A | 2026-03-29 A | MKH2-02-003-EN-1540 | 100% | 2026-05-04 | 2026-05-09 | QA/QC Engineer [150 h] |  |  | MAK-01-SB& AP-1380 |
| MKH2-02-003-EN-1900 |  | Material Approval for Ready Mixed Concrete | 6d | 2026-03-29 A | 2026-03-29 A | MKH2-02-003-EN-1890 | 100% | 2026-05-10 | 2026-05-16 | Consultant Staff [150 h]; Cost for Engg [1] | 86,709.19 | 86,709.19 | MAK-01-SB& AP-1390 |
|  | WP | **WATER PROOFING** |  | 2026-03-28 | 2026-03-28 |  |  |  |  |  |  |  |  |
| MKH2-02-003-EN-1910 |  | Material Submittal for Water Proof ing | 5d | 2026-03-28 A | 2026-03-28 A | MKH2-02-003-EN-1560 | 100% | 2026-04-21 | 2026-04-26 | QA/QC Engineer [150 h] |  |  | MAK-01-SB& AP-1400 |
| MKH2-02-003-EN-1920 |  | Material Approval for Water Proofing | 6d | 2026-03-28 A | 2026-03-28 A | MKH2-02-003-EN-1910 | 100% | 2026-04-27 | 2026-05-03 | Consultant Staff [150 h]; Cost for Engg [1] | 86,709.19 | 86,709.19 | MAK-01-SB& AP-1410 |
|  | ABC | **AGGREGATE BASE COURSE** |  | 2026-03-17 | 2026-03-24 |  |  |  |  |  |  |  |  |
| MKH2-02-003-EN-1930 |  | Material Submittal for Aggregate Base Cource | 5d | 2026-03-17 A | 2026-03-18 A | MKH2-02-003-EN-1580 | 100% | 2026-04-14 | 2026-04-19 | QA/QC Engineer [150 h] |  |  | MAK-01-SB& AP-1420 |
| MKH2-02-003-EN-1940 |  | Material Approval for Aggregate Base Cource | 6d | 2026-03-18 A | 2026-03-24 A | MKH2-02-003-EN-1930 | 100% | 2026-04-20 | 2026-04-26 | Consultant Staff [150 h]; Cost for Engg [1] | 86,709.19 | 86,709.19 | MAK-01-SB& AP-1430 |
|  | BBC& BWC | **BITU,INOUS BASE & WEARING COURSE** |  | 2026-03-08 | 2026-03-09 |  |  |  |  |  |  |  |  |
| MKH2-02-003-EN-1950 |  | Material Submittal for Bituminous Base & Wearing Cource | 5d | 2026-03-08 A | 2026-03-09 A | MKH2-02-003-EN-1600 | 100% | 2026-04-16 | 2026-04-21 | QA/QC Engineer [150 h] |  |  | MAK-01-SB& AP-1440 |
| MKH2-02-003-EN-1960 |  | Material Approval for Bituminous Base & Wearing Cource | 6d | 2026-03-08 A | 2026-03-09 A | MKH2-02-003-EN-1950 | 100% | 2026-04-22 | 2026-04-28 | Consultant Staff [150 h]; Cost for Engg [1] | 86,709.19 | 86,709.19 | MAK-01-SB& AP-1450 |
|  | CURB | **PRE-CAST CONCRETE CURBS** |  | 2026-03-29 | 2026-03-29 |  |  |  |  |  |  |  |  |
| MKH2-02-003-EN-1970 |  | Material Submittal for Precast Concrete Curb | 5d | 2026-03-29 A | 2026-03-29 A | MKH2-02-003-EN-1620 | 100% | 2026-04-21 | 2026-04-26 | QA/QC Engineer [150 h] |  |  | MAK-01-SB& AP-1460 |
| MKH2-02-003-EN-1980 |  | Material Approval for Precast Concrete Curb | 6d | 2026-03-29 A | 2026-03-29 A | MKH2-02-003-EN-1970 | 100% | 2026-04-27 | 2026-05-03 | Consultant Staff [150 h]; Cost for Engg [1] | 86,709.19 | 86,709.19 | MAK-01-SB& AP-1470 |
|  | INTR | **INTERLOCKING PAVING BLOCKS** |  | 2026-03-29 | 2026-03-29 |  |  |  |  |  |  |  |  |
| MKH2-02-003-EN-1990 |  | Material Submittal for Interlocking Block Pavers | 5d | 2026-03-29 A | 2026-03-29 A | MKH2-02-003-EN-1640 | 100% | 2026-04-21 | 2026-04-26 | QA/QC Engineer [150 h] |  |  | MAK-01-SB& AP-1480 |
| MKH2-02-003-EN-2000 |  | Material Approval for Interlocking Block Pavers | 6d | 2026-03-29 A | 2026-03-29 A | MKH2-02-003-EN-1990 | 100% | 2026-04-27 | 2026-05-03 | Consultant Staff [150 h]; Cost for Engg [1] | 86,709.19 | 86,709.19 | MAK-01-SB& AP-1490 |
|  | MARK | **PAVEMENT MARKING** |  | 2026-05-12 | 2026-05-16 |  |  |  |  |  |  |  |  |
| MKH2-02-003-EN-2010 |  | Material Submittal for Pavement Markings | 5d | 2026-05-12 A | 2026-05-16 A | MKH2-02-003-EN-1660 | 100% | 2026-05-20 | 2026-05-25 | QA/QC Engineer [150 h] |  |  | MAK-01-SB& AP-1500 |
| MKH2-02-003-EN-2020 |  | Material Approval for Pavement Markings | 6d | 2026-05-12 A | 2026-05-16 A | MKH2-02-003-EN-2010 | 100% | 2026-05-30 | 2026-06-04 | Consultant Staff [150 h]; Cost for Engg [1] | 86,709.19 | 86,709.19 | MAK-01-SB& AP-1510 |
|  | SIGN | **TRAFFIC SIGNS** |  | 2026-04-22 | 2026-04-28 |  |  |  |  |  |  |  |  |
| MKH2-02-003-EN-2030 |  | Material Submittal for Traffic Signs | 5d | 2026-04-22 A | 2026-04-23 A | MKH2-02-003-EN-1680 | 100% | 2026-05-06 | 2026-05-11 | QA/QC Engineer [150 h] |  |  | MAK-01-SB& AP-1520 |
| MKH2-02-003-EN-2040 |  | Material Approval for Traffic Signs | 6d | 2026-04-25 A | 2026-04-28 A | MKH2-02-003-EN-2030 | 100% | 2026-05-12 | 2026-05-18 | Consultant Staff [150 h]; Cost for Engg [1] | 86,709.19 | 86,709.19 | MAK-01-SB& AP-1530 |

| ID | WBS | Activity | Duration | Start | Finish | Predecessors | Complete | Planned start | Planned finish | Resources | Cost | Actual cost | Old Activity ID - MK |
| --- | --- | --- | --- | --- | --- | --- | --- | --- | --- | --- | --- | --- | --- |
|  | ELE | **ELECTRICAL NETWORK** |  | 2026-03-28 | 2026-04-29 |  |  |  |  |  |  |  |  |
|  | PIPE | **PIPE FOR DUCT** |  | 2026-03-28 | 2026-03-30 |  |  |  |  |  |  |  |  |
| MKH2-02-003-EN-2050 |  | Material Submittal for Pipe for the Duct | 5d | 2026-03-28 A | 2026-03-30 A | MKH2-02-003-EN-1700 | 100% | 2026-04-21 | 2026-04-26 | QA/QC Engineer [250 h] |  |  | MAK-01-SB& AP-1540 |
| MKH2-02-003-EN-2060 |  | Material Approval for Pipe for the Duct | 6d | 2026-03-28 A | 2026-03-30 A | MKH2-02-003-EN-2050 | 100% | 2026-04-27 | 2026-05-03 | Consultant Staff [250 h]; Cost for Engg [1] | 86,709.19 | 86,709.19 | MAK-01-SB& AP-1550 |
|  | LV-CAB | **LOW VOLTAGE CABLES** |  | 2026-03-28 | 2026-03-30 |  |  |  |  |  |  |  |  |
| MKH2-02-003-EN-2070 |  | Material Submittal for Low Voltage Cables | 5d | 2026-03-28 A | 2026-03-28 A | MKH2-02-003-EN-1720 | 100% | 2026-04-14 | 2026-04-19 | QA/QC Engineer [250 h] |  |  | MAK-01-SB& AP-1560 |
| MKH2-02-003-EN-2080 |  | Material Approval for Low Voltage Cables | 6d | 2026-03-28 A | 2026-03-30 A | MKH2-02-003-EN-2070 | 100% | 2026-04-21 | 2026-04-27 | Consultant Staff [250 h]; Cost for Engg [1] | 86,709.19 | 86,709.19 | MAK-01-SB& AP-1570 |
|  | EARTH | **EARTHING SYSTEM** |  | 2026-04-22 | 2026-04-29 |  |  |  |  |  |  |  |  |
| MKH2-02-003-EN-2090 |  | Material Submittal for Earthing System | 5d | 2026-04-22 A | 2026-04-23 A | MKH2-02-003-EN-1740 | 100% | 2026-05-06 | 2026-05-11 | QA/QC Engineer [250 h] |  |  | MAK-01-SB& AP-1580 |
| MKH2-02-003-EN-2100 |  | Material Approval for Earthing System | 6d | 2026-04-25 A | 2026-04-29 A | MKH2-02-003-EN-2090 | 100% | 2026-05-12 | 2026-05-18 | Consultant Staff [250 h]; Cost for Engg [1] | 86,709.19 | 86,709.19 | MAK-01-SB& AP-1590 |
|  | LV-DP | **LOW VOLTAGE DISTRIBUTION PANNEL** |  | 2026-04-18 | 2026-04-21 |  |  |  |  |  |  |  |  |
| MKH2-02-003-EN-2110 |  | Material Submittal for Distribution Panel | 5d | 2026-04-18 A | 2026-04-19 A | MKH2-02-003-EN-1760 | 100% | 2026-05-13 | 2026-05-18 | QA/QC Engineer [250 h] |  |  | MAK-01-SB& AP-1600 |
| MKH2-02-003-EN-2120 |  | Material Approval for Distribution Panel | 6d | 2026-04-21 A | 2026-04-21 A | MKH2-02-003-EN-2110 | 100% | 2026-05-19 | 2026-05-25 | Consultant Staff [250 h]; Cost for Engg [1] | 86,709.19 | 86,709.19 | MAK-01-SB& AP-1610 |
|  | LIGH | **LIGHTING POLES** |  | 2026-04-04 | 2026-04-09 |  |  |  |  |  |  |  |  |
| MKH2-02-003-EN-2130 |  | Material Submittal for Lighting poles | 5d | 2026-04-04 A | 2026-04-05 A | MKH2-02-003-EN-1780 | 100% | 2026-04-08 | 2026-04-13 | QA/QC Engineer [250 h] |  |  | MAK-01-SB& AP-1620 |
| MKH2-02-003-EN-2140 |  | Material Approval for Lighting poles | 6d | 2026-04-05 A | 2026-04-09 A | MKH2-02-003-EN-2130 | 100% | 2026-05-13 | 2026-05-19 | Consultant Staff [250 h]; Cost for Engg [1] | 86,709.19 | 86,709.19 | MAK-01-SB& AP-1630 |
|  | FID & PAN | **LIGHTINH PANNELS/FEEDER PILLERS** |  | 2026-04-19 | 2026-04-21 |  |  |  |  |  |  |  |  |
| MKH2-02-003-EN-2150 |  | Material Submittal for Lighting panels/Feeder Pillers | 5d | 2026-04-19 A | 2026-04-20 A | MKH2-02-003-EN-1800 | 100% | 2026-05-06 | 2026-05-11 | QA/QC Engineer [250 h] |  |  | MAK-01-SB& AP-1640 |
| MKH2-02-003-EN-2160 |  | Material Approval for Lighting panels/Feeder Pillers | 6d | 2026-04-21 A | 2026-04-21 A | MKH2-02-003-EN-2150 | 100% | 2026-05-12 | 2026-05-18 | Consultant Staff [250 h]; Cost for Engg [1] | 86,709.19 | 86,709.19 | MAK-01-SB& AP-1650 |
|  | LUM | **STREET LIGHTING LUMINAIRE** |  | 2026-04-04 | 2026-04-09 |  |  |  |  |  |  |  |  |
| MKH2-02-003-EN-2170 |  | Material Submittal for Lighting Luminaire | 5d | 2026-04-04 A | 2026-04-05 A | MKH2-02-003-EN-1820 | 100% | 2026-04-21 | 2026-04-26 | QA/QC Engineer [250 h] |  |  | MAK-01-SB& AP-1660 |
| MKH2-02-003-EN-2180 |  | Material Approval for Lighting Luminaire | 6d | 2026-04-05 A | 2026-04-09 A | MKH2-02-003-EN-2170 | 100% | 2026-05-06 | 2026-05-12 | Consultant Staff [250 h]; Cost for Engg [48] | 86,709.19 | 86,709.19 | MAK-01-SB& AP-1670 |
|  | STROM | **OPPEN CHANNEL** |  | 2026-06-03 | 2026-06-06 |  |  |  |  |  |  |  |  |
|  | RIPRAP | **RIPRAP MATERIAL** |  | 2026-06-03 | 2026-06-06 |  |  |  |  |  |  |  |  |
| MKH2-02-003-EN-2190 |  | Material Submittal for RIP-RAP Material | 5d | 2026-06-03 A | 2026-06-04 A | MKH2-02-003-EN-1840 | 100% | 2026-06-10 | 2026-06-15 | QA/QC Engineer [250 h] |  |  | MAK-01-SB& AP-1680 |
| MKH2-02-003-EN-2200 |  | Material Approval for RIP-RAP Material | 6d | 2026-06-04 A | 2026-06-06 A | MKH2-02-003-EN-2190, MKH2-02-003-EN-1500, MKH2-02-003-EN-1490, MKH2-02-003-EN-1480, MKH2-02-003-EN-1470, MKH2-02-003-EN-1460, MKH2-02-003-EN-1400, MKH2-02-003-EN-1390 | 100% | 2026-06-29 | 2026-07-05 | Consultant Staff [250 h]; Cost for Engg [1] | 86,709.19 | 86,709.19 | MAK-01-SB& AP-1690 |

| ID | WBS | Activity | Duration | Start | Finish | Predecessors | Complete | Remaining | Planned start | Planned finish | Total float | Free float | Resources | Cost | Actual cost | Old Activity ID - MK | Procurement |
| --- | --- | --- | --- | --- | --- | --- | --- | --- | --- | --- | --- | --- | --- | --- | --- | --- | --- |
|  | ACESSO | **ACCESSORIES FOR RIPRAP** |  | 2026-06-03 | 2026-06-06 |  |  |  |  |  |  |  |  |  |  |  |  |
| MKH2-02-003-EN-2210 |  | Material Submittal for Accessories for RIP-RAP | 5d | 2026-06-03 A | 2026-06-04 A | MKH2-02-003-EN-1860 | 100% |  | 2026-06-10 | 2026-06-15 |  |  | QA/QC Engineer [250 h] |  |  | MAK-01-SB& AP-1700 |  |
| MKH2-02-003-EN-2220 |  | Material Approval for Accessories for RIP-RAP | 8d | 2026-06-04 A | 2026-06-06 A | MKH2-02-003-EN-2210 | 100% |  | 2026-06-16 | 2026-06-24 |  |  | Consultant Staff [250 h]; Cost for Engg [1] | 86,709.19 | 86,709.19 | MAK-01-SB& AP-1710 |  |
|  | PRO | **PROCUREMENT** |  | 2026-03-10 | 2027-01-14 |  |  |  |  |  |  |  |  |  |  |  |  |
|  | SLI | **SHORT LEAD ITEM** |  | 2026-03-10 | 2026-12-27 |  |  |  |  |  |  |  |  |  |  |  |  |
|  | ROAD | **ROAD WORKS-CIVIL** |  | 2026-03-10 | 2026-12-27 |  |  |  |  |  |  |  |  |  |  |  |  |
|  | STEEL | **STEEL REINFORCEMENT** |  | 2026-03-10 | 2026-06-25 |  |  |  |  |  |  |  |  |  |  |  |  |
| MKH2-02-003-PR-1000 |  | PO for Steel Reinforcement | 9d | 2026-03-10 A | 2026-03-11 A | MKH2-02-003-EN-1880, MKH2-02-003-EN-1500, MKH2-02-003-EN-1490, MKH2-02-003-EN-1480, MKH2-02-003-EN-1470, MKH2-02-003-EN-1460, MKH2-02-003-EN-1400, MKH2-02-003-EN-1390 | 100% |  | 2026-04-30 | 2026-05-10 |  |  | Purchaser [670 h] |  |  | MAK-01-PR-1000 | RD2 |
| MKH2-02-003-PR-1010 |  | Material Fabrication for Steel Reinforcement | 16d | 2026-03-12 A | 2026-03-15 A | MKH2-02-003-PR-1000, MKH2-02-003-EN-1940, MKH2-02-003-EN-1500, MKH2-02-003-EN-1450, MKH2-02-003-EN-1440, MKH2-02-003-EN-1430, MKH2-02-003-EN-1420, MKH2-02-003-EN-1410, MKH2-02-003-EN-1400 | 100% |  | 2026-05-11 | 2026-06-01 |  |  | Purchaser [650 h] |  |  | MAK-01-PR-1010 | RD2 |
| MKH2-02-003-PR-1020 |  | Material Delivery for 1st lot of Steel Reinforcement | 15d | 2026-03-18 A | 2026-03-25 A | MKH2-02-003-PR-1010 | 100% |  | 2026-06-02 | 2026-06-18 |  |  | Purchaser [1250 h]; Cost for Proc [1] | 127,513.5 | 127,513.5 | MAK-01-PR-1020 | RD2 |
| MKH2-02-003-PR-1030 |  | Material Delivery for 2nd lot of Steel Reinforcement | 15d | 2026-05-16 A | 2026-06-25 A | MKH2-02-003-PR-1020 | 100% |  | 2026-06-20 | 2026-07-06 |  |  | Purchaser [1250 h]; Cost for Proc [1] | 127,513.5 | 127,513.5 | MAK-01-PR-1030 | RD2 |
|  | RMC | **READY MIX CONCRETE** |  | 2026-04-07 | 2026-08-22 |  |  |  |  |  |  |  |  |  |  |  |  |
| MKH2-02-003-PR-1040 |  | PO for Ready Mixed Concrete | 9d | 2026-04-07 A | 2026-04-07 A | MKH2-02-003-EN-1900 | 100% |  | 2026-04-15 | 2026-04-25 |  |  | Purchaser [650 h] |  |  | MAK-01-PR-1040 | RD2 |
| MKH2-02-003-PR-1050 |  | Material Delivery for 1st lot of Ready Mixed Concrete | 26d | 2026-04-07 A | 2026-08-22 A | MKH2-02-003-PR-1040 | 100% |  | 2026-04-26 | 2026-05-25 |  |  | Purchaser [650 h]; Cost for Proc [1] | 255,027 | 255,027 | MAK-01-PR-1050 | RD2 |
|  | WP | **WATER PROOFING** |  | 2026-04-08 | 2026-06-11 |  |  |  |  |  |  |  |  |  |  |  |  |
| MKH2-02-003-PR-1060 |  | PO for Water Proofing | 6d | 2026-04-08 A | 2026-04-08 A | MKH2-02-003-EN-1920 | 100% |  | 2026-04-15 | 2026-04-21 |  |  | Purchaser [650 h] |  |  | MAK-01-PR-1060 | RD2 |
| MKH2-02-003-PR-1070 |  | Material Fabrication for Water Proofing | 20d | 2026-04-09 A | 2026-06-10 A | MKH2-02-003-PR-1060 | 100% |  | 2026-04-22 | 2026-05-14 |  |  | Purchaser [650 h] |  |  | MAK-01-PR-1070 | RD2 |
| MKH2-02-003-PR-1080 |  | Material Delivery for 1st lot of Water Proofing | 22d | 2026-04-11 A | 2026-06-11 A | MKH2-02-003-PR-1070 | 100% |  | 2026-05-16 | 2026-06-13 |  |  | Purchaser [1510 h]; Cost for Proc [1] | 255,027 | 255,027 | MAK-01-PR-1080 | RD2 |
|  | ABC | **AGGREGATE BASE COURSE** |  | 2026-03-11 | 2026-08-19 |  |  |  |  |  |  |  |  |  |  |  |  |
| MKH2-02-003-PR-1090 |  | PO for Aggregate Base Course | 4d | 2026-03-11 A | 2026-03-12 A | MKH2-02-003-EN-1940 | 100% |  | 2026-04-27 | 2026-04-30 |  |  | Purchaser [650 h] |  |  | MAK-01-PR-1090 | RD2 |
| MKH2-02-003-PR-1100 |  | Material Delivery for 1st lot of Aggregate Base Course - Stage 1 | 20d | 2026-03-14 A | 2026-06-10 A | MKH2-02-003-PR-1090, MKH2-02-003-EN-1450, MKH2-02-003-EN-1410, MKH2-02-003-EN-1420, MKH2-02-003-EN-1430, MKH2-02-003-EN-1440 | 100% |  | 2026-05-02 | 2026-05-24 |  |  | Purchaser [650 h]; Cost for Proc [1] | 127,513.5 | 127,513.5 | MAK-01-PR-1100 | RD2 |
| MKH2-02-003-PR-1110 |  | Material Delivery for 2nd lot of Aggregate Base Course - Stage 2 | 20d | 2026-06-11 A | 2026-08-19 A | MKH2-02-003-PR-1100 | 100% |  | 2026-07-09 | 2026-08-01 |  |  | Purchaser [1510 h]; Cost for Proc [1] | 127,513.5 | 127,513.5 | MAK-01-PR-1110 | RD2 |
|  | BBC& BWC | **BITUMINOUS BASE & WEARING COURSE** |  | 2026-04-08 | 2026-11-29 |  |  |  |  |  |  |  |  |  |  |  |  |
| MKH2-02-003-PR-1120 |  | PO for Bituminous Base & Wearing Cource | 4d | 2026-04-08 A | 2026-04-08 A | MKH2-02-003-EN-1960 | 100% |  | 2026-04-15 | 2026-04-19 |  |  | Purchaser [650 h] |  |  | MAK-01-PR-1120 | RD2 |
| MKH2-02-003-PR-1130 |  | Material Delivery for 1st lot to the Site | 25d | 2026-04-08 A | 2026-11-29 | MKH2-02-003-PR-1120 | 80% | 22d | 2026-04-20 | 2026-05-18 | -22d | 0d | Purchaser [1510 h]; Cost for Proc [1] | 255,027 | 204,021.6 | MAK-01-PR-1130 | RD2 |

| ID | WBS | Activity | Duration | Start | Finish | Predecessors | Complete | Remaining | Planned start | Planned finish | Total float | Free float | Resources | Cost | Actual cost | Old Activity ID - MK | Procurement |
| --- | --- | --- | --- | --- | --- | --- | --- | --- | --- | --- | --- | --- | --- | --- | --- | --- | --- |
|  | CURB | **PRE-CAST CONCRETE CURBS** |  | 2026-04-20 | 2026-08-08 |  |  |  |  |  |  |  |  |  |  |  |  |
| MKH2-02-003-PR-1140 |  | PO for Precast Concrete curb | 4d | 2026-04-20 A | 2026-04-21 A | MKH2-02-003-EN-1980 | 100% |  | 2026-05-06 | 2026-05-10 |  |  | Purchaser [650 h] |  |  | MAK-01-PR-1140 | RD2 |
| MKH2-02-003-PR-1150 |  | Material Fabrication for Precast Concrete curb | 24d | 2026-04-22 A | 2026-04-23 A | MKH2-02-003-PR-1140, MKH2-02-003-MS-1020, MKH2-02-003-EN-1450, MKH2-02-003-EN-1440, MKH2-02-003-EN-1430, MKH2-02-003-EN-1420, MKH2-02-003-EN-1410, MKH2-02-003-EN-1400, MKH2-02-003-EN-1390 | 100% |  | 2026-06-06 | 2026-07-02 |  |  | Purchaser [650 h] |  |  | MAK-01-PR-1150 | RD2 |
| MKH2-02-003-PR-1160 |  | Material Delivery for 1st lot of Precast Concrete Kerb | 25d | 2026-04-25 A | 2026-08-08 A | MKH2-02-003-PR-1150 | 100% |  | 2026-07-04 | 2026-08-01 |  |  | Purchaser [1510 h]; Cost for Proc [1] | 255,027 | 255,027 | MAK-01-PR-1160 | RD2 |
|  | INTR | **INTERLOCKING PAVING BLOCKS** |  | 2026-05-16 | 2026-12-24 |  |  |  |  |  |  |  |  |  |  |  |  |
| MKH2-02-003-PR-1170 |  | PO for Interlocking Block Pavers | 5d | 2026-05-16 A | 2026-05-17 A | MKH2-02-003-EN-2000 | 100% |  | 2026-05-20 | 2026-05-25 |  |  | Purchaser [650 h] |  |  | MAK-01-PR-1170 | RD2 |
| MKH2-02-003-PR-1180 |  | Material Fabrication for Interlocking Block Pavers | 24d | 2026-05-17 A | 2026-05-18 A | MKH2-02-003-PR-1170 | 100% |  | 2026-05-30 | 2026-06-25 |  |  | Purchaser [650 h] |  |  | MAK-01-PR-1180 | RD2 |
| MKH2-02-003-PR-1190 |  | Material Delivery for 1st lot of Interlocking Block Pavers | 22d | 2026-07-15 A | 2026-12-24 | MKH2-02-003-PR-1180, MKH2-02-003-PR-1130 | 90% | 22d | 2026-09-07 | 2026-10-03 | -22d | 2d | Purchaser [1520 h]; Cost for Proc [1] | 255,027 | 229,524.3 | MAK-01-PR-1190 | RD2 |
|  | MARK | **PAVEMENT MARKING** |  | 2026-09-16 | 2026-12-27 |  |  |  |  |  |  |  |  |  |  |  |  |
| MKH2-02-003-PR-1200 |  | PO for Pavement Markings | 5d | 2026-09-16 A | 2026-09-19 A | MKH2-02-003-EN-2020 | 100% |  | 2026-09-24 | 2026-09-29 |  |  | Purchaser [650 h] |  |  | MAK-01-PR-1200 | RD2 |
| MKH2-02-003-PR-1210 |  | Material Fabrication for Pavement Markings | 24d | 2026-11-04 | 2026-12-01 | MKH2-02-003-PR-1200 |  |  |  |  | -24d | 0d | Purchaser [650 h] |  |  | MAK-01-PR-1210 | RD2 |
| MKH2-02-003-PR-1220 |  | Material Delivery for 1st lot of Pavement Markings | 22d | 2026-12-02 | 2026-12-27 | MKH2-02-003-PR-1210 |  |  |  |  | -24d | 0d | Purchaser [1520 h]; Cost for Proc [1] | 255,027 |  | MAK-01-PR-1220 | RD2 |
|  | SIGN | **TRAFFIC SIGNS** |  | 2026-04-29 | 2026-07-01 |  |  |  |  |  |  |  |  |  |  |  |  |
| MKH2-02-003-PR-1230 |  | PO for Traffic Signs | 6d | 2026-04-29 A | 2026-04-30 A | MKH2-02-003-EN-2040 | 100% |  | 2026-05-19 | 2026-05-25 |  |  | Purchaser [650 h] |  |  | MAK-01-PR-1230 | RD2 |
| MKH2-02-003-PR-1240 |  | Material Fabrication for Traffic Signs | 24d | 2026-05-02 A | 2026-06-10 A | MKH2-02-003-PR-1230 | 100% |  | 2026-05-30 | 2026-06-25 |  |  | Purchaser [650 h] |  |  | MAK-01-PR-1240 | RD2 |
| MKH2-02-003-PR-1250 |  | Material Delivery for 1st lot of Traffic Signs | 14d | 2026-06-10 A | 2026-07-01 A | MKH2-02-003-PR-1240 | 100% |  | 2026-07-15 | 2026-07-30 |  |  | Purchaser [1520 h]; Cost for Proc [1] | 255,027 | 255,027 | MAK-01-PR-1250 | RD2 |
|  | ELE | **ELECTRICAL NETWORK** |  | 2026-04-01 | 2026-07-01 |  |  |  |  |  |  |  |  |  |  |  |  |
|  | PIPE | **PIPE FOR THE DUCTS** |  | 2026-04-01 | 2026-06-18 |  |  |  |  |  |  |  |  |  |  |  |  |
| MKH2-02-003-PR-1260 |  | PO for Pipe for Duct | 11d | 2026-04-01 A | 2026-04-01 A | MKH2-02-003-EN-2060, MKH2-02-003-EN-1500 | 100% |  | 2026-05-04 | 2026-05-16 |  |  | Purchaser [650 h] |  |  | MAK-01-PR-1260 | EW2 |
| MKH2-02-003-PR-1270 |  | Material Fabrication for Pipe for Duct | 24d | 2026-04-01 A | 2026-06-08 A | MKH2-02-003-PR-1260 | 100% |  | 2026-05-17 | 2026-06-16 |  |  | Purchaser [650 h] |  |  | MAK-01-PR-1270 | EW2 |
| MKH2-02-003-PR-1280 |  | Material Delivery for 1st lot of Pipe for Duct | 20d | 2026-06-08 A | 2026-06-18 A | MKH2-02-003-PR-1270 | 100% |  | 2026-06-17 | 2026-07-09 |  |  | Purchaser [650 h]; Cost for Proc [1] | 255,027 | 255,027 | MAK-01-PR-1280 | EW2 |
|  | EART | **EARTHING SYSTEM** |  | 2026-04-29 | 2026-07-01 |  |  |  |  |  |  |  |  |  |  |  |  |
| MKH2-02-003-PR-1290 |  | PO for Earthing System | 9d | 2026-04-29 A | 2026-04-30 A | MKH2-02-003-EN-2100 | 100% |  | 2026-05-19 | 2026-06-01 |  |  | Purchaser [650 h] |  |  | MAK-01-PR-1290 | EW2 |
| MKH2-02-003-PR-1300 |  | Material Fabrication for Earthing System | 24d | 2026-05-02 A | 2026-06-17 A | MKH2-02-003-PR-1290 | 100% |  | 2026-06-02 | 2026-06-29 |  |  | Purchaser [650 h] |  |  | MAK-01-PR-1300 | EW2 |
| MKH2-02-003-PR-1310 |  | Material Delivery for 1st lot of Earthing System | 22d | 2026-06-18 A | 2026-07-01 A | MKH2-02-003-PR-1300, MKH2-02-003-PR-1130 | 100% |  | 2026-07-22 | 2026-08-16 |  |  | Purchaser [650 h]; Cost for Proc [1] | 255,027 | 255,027 | MAK-01-PR-1310 | EW2 |

| ID | WBS | Activity | Duration | Start | Finish | Predecessors | Complete | Remaining | Planned start | Planned finish | Total float | Free float | Resources | Cost | Actual cost | Old Activity ID - MK | Procurement |
| --- | --- | --- | --- | --- | --- | --- | --- | --- | --- | --- | --- | --- | --- | --- | --- | --- | --- |
|  | CHAN | **OPEN CHANNEL** |  | 2026-06-10 | 2026-09-08 |  |  |  |  |  |  |  |  |  |  |  |  |
| MKH2-02-003-PR-1320 |  | PO for RIP-RAP Material & Its Acessories | 4d | 2026-06-10 A | 2026-06-11 A | MKH2-02-003-EN-2220, MKH2-02-003-EN-2200 | 100% |  | 2026-06-17 | 2026-06-21 |  |  | Purchaser [650 h] |  |  | MAK-01-PR-1320 | OP2 |
| MKH2-02-003-PR-1330 |  | Material Delivery for RIP-RAP Material & Its Acessories | 18d | 2026-06-17 A | 2026-09-08 A | MKH2-02-003-PR-1320 | 100% |  | 2026-06-22 | 2026-07-12 |  |  | Purchaser [1450 h]; Cost for Proc [1] | 255,027 | 255,027 | MAK-01-PR-1330 | OP2 |
|  | LLI | **LONG LEAD ITEM** |  | 2026-04-25 | 2027-01-14 |  |  |  |  |  |  |  |  |  |  |  |  |
|  | POW | **ELECTRICAL POWER** |  | 2026-05-16 | 2027-01-05 |  |  |  |  |  |  |  |  |  |  |  |  |
|  | 1 | **LV-CABLES** |  | 2026-05-16 | 2027-01-05 |  |  |  |  |  |  |  |  |  |  |  |  |
| MKH2-02-003-PR-1340 |  | PO for Low Voltage Cables | 6d | 2026-05-16 A | 2026-05-17 A | MKH2-02-003-EN-2080, MKH2-02-003-EN-1500 | 100% |  | 2026-06-11 | 2026-06-17 |  |  | Purchaser [1650 h] |  |  | MAK-01-PR-LLI-1000 | EW2 |
| MKH2-02-003-PR-1350 |  | Material Fabrication for Low Voltage Cables - Stage 1 | 9d | 2026-05-17 A | 2026-05-18 A | MKH2-02-003-PR-1340, MKH2-02-003-EN-1450 | 100% |  | 2026-06-18 | 2026-06-28 |  |  | Purchaser [1650 h] |  |  | MAK-01-PR-LLI-1010 | EW2 |
| MKH2-02-003-PR-1360 |  | Material Fabrication for Low Voltage Cables - Stage 2 | 20d | 2026-05-17 A | 2026-05-18 A | MKH2-02-003-PR-1350 | 100% |  | 2026-06-17 | 2026-07-09 |  |  | Purchaser [950 h] |  |  | MAK-01-PR-LLI-1020 | EW2 |
| MKH2-02-003-PR-1370 |  | Material Fabrication for Low Voltage Cables - Stage 3 | 20d | 2026-05-17 A | 2026-05-18 A | MKH2-02-003-PR-1360, MKH2-02-003-PR-1330, MKH2-02-003-PR-1050 | 100% |  | 2026-07-13 | 2026-08-04 |  |  | Purchaser [1850 h] |  |  | MAK-01-PR-LLI-1030 | EW2 |
| MKH2-02-003-PR-1380 |  | 6/2 | 22d | 2026-05-20 A | 2026-06-25 A | MKH2-02-003-PR-1370, MKH2-02-003-PR-1310, MKH2-02-003-PR-1280, MKH2-02-003-PR-1250, MKH2-02-003-PR-1220, MKH2-02-003-PR-1190, MKH2-02-003-PR-1160, MKH2-02-003-PR-1050, MKH2-02-003-PR-1030 | 100% |  | 2026-08-12 | 2026-09-06 |  |  | Purchaser [1650 h]; Cost for Proc [1] | 1,468,955.84 | 1,468,955.84 | MAK-01-PR-LLI-1040 | EW2 |
| MKH2-02-003-PR-1390 |  | Staging Time for Low Voltage Cables | 9d | 2026-05-20 A | 2027-01-05 | MKH2-02-003-PR-1380, MKH2-02-003-PR-1310 | 60% | 8d | 2026-09-10 | 2026-09-20 | -24d | 0d | Purchaser [816 h] |  |  | MAK-01-PR-LLI-1050 | EW2 |
|  | 2 | **LV-DISTRIBUTION PANNELS** |  | 2026-05-25 | 2026-08-29 |  |  |  |  |  |  |  |  |  |  |  |  |
| MKH2-02-003-PR-1400 |  | PO for Low Voltage Distribution Panels | 5d | 2026-05-25 A | 2026-05-26 A | MKH2-02-003-EN-2120, MKH2-02-003-EN-5030, MKH2-02-003-EN-5050, MKH2-02-003-EN-5060, MKH2-02-003-EN-5070, MKH2-02-003-EN-5080, MKH2-02-003-EN-5090 | 100% |  | 2026-07-04 | 2026-07-08 |  |  | Purchaser [650 h] |  |  | MAK-01-PR-LLI-1060 | EW2 |
| MKH2-02-003-PR-1410 |  | Material Fabrication for Low Voltage Distribution Panels - Stage 1 | 17d | 2026-06-10 A | 2026-06-11 A | MKH2-02-003-PR-1400 | 100% |  | 2026-07-09 | 2026-07-28 |  |  | Purchaser [650 h] |  |  | MAK-01-PR-LLI-1070 | EW2 |
| MKH2-02-003-PR-1420 |  | Material Fabrication for Low Voltage Distribution Panels - Stage 2 | 16d | 2026-06-13 A | 2026-06-14 A | MKH2-02-003-PR-1410 | 100% |  | 2026-07-29 | 2026-08-16 |  |  | Purchaser [650 h] |  |  | MAK-01-PR-LLI-1080 | EW2 |
| MKH2-02-003-PR-1430 |  | Material Fabrication for Low Voltage Distribution Panels - Stage 3 | 16d | 2026-06-30 A | 2026-07-01 A | MKH2-02-003-PR-1420 | 100% |  | 2026-07-25 | 2026-08-11 |  |  | Purchaser [650 h] |  |  | MAK-01-PR-LLI-1090 | EW2 |
| MKH2-02-003-PR-1440 |  | Material Delivery for Low Voltage Distribution Panels 1st Lot | 22d | 2026-07-02 A | 2026-07-18 A | MKH2-02-003-PR-1430, MKH2-02-003-PR-1220 | 100% |  | 2026-09-06 | 2026-10-01 |  |  | Purchaser [1250 h]; Cost for Proc [1] | 734,477.92 | 734,477.92 | MAK-01-PR-LLI-1100 | EW2 |
| MKH2-02-003-PR-1450 |  | Material Delivery for Low Voltage Distribution Panels 2nd Lot | 8d | 2026-07-18 A | 2026-08-29 A | MKH2-02-003-PR-1440 | 100% |  | 2026-09-28 | 2026-10-06 |  |  | Purchaser [1250 h]; Cost for Proc [1] | 734,477.92 | 734,477.92 | MAK-01-PR-LLI-1110 | EW2 |
| MKH2-02-003-PR-1460 |  | Staging Time for LV Distribution pannel | 9d | 2026-07-18 A | 2026-08-29 A | MKH2-02-003-PR-1450, MKH2-02-003-PR-1440 | 100% |  | 2026-10-07 | 2026-10-17 |  |  | Purchaser [650 h] |  |  | MAK-01-PR-LLI-1111 | EW2 |
|  | LIGH1 | **STREET LIGHTING** |  | 2026-04-25 | 2027-01-14 |  |  |  |  |  |  |  |  |  |  |  |  |
|  | POL | **POLES** |  | 2026-04-25 | 2026-11-12 |  |  |  |  |  |  |  |  |  |  |  |  |
| MKH2-02-003-PR-1470 |  | PO for Lighting poles single arm & double arm | 4d | 2026-04-25 A | 2026-04-26 A | MKH2-02-003-EN-2140 | 100% |  | 2026-05-13 | 2026-05-17 |  |  | Purchaser [650 h] |  |  | MAK-01-PR-LLI-1120 | EW2 |
| MKH2-02-003-PR-1480 |  | Material Fabrication for Lighting poles - Stage 1 | 9d | 2026-04-27 A | 2026-04-30 A | MKH2-02-003-PR-1470 | 100% |  | 2026-05-18 | 2026-05-31 |  |  | Purchaser [650 h] |  |  | MAK-01-PR-LLI-1130 | EW2 |
| MKH2-02-003-PR-1490 |  | Material Fabrication for Lighting poles - Stage 2 | 20d | 2026-06-04 A | 2026-06-06 A | MKH2-02-003-PR-1480 | 100% |  | 2026-06-17 | 2026-07-09 |  |  | Purchaser [650 h] |  |  | MAK-01-PR-LLI-1140 | EW2 |
| MKH2-02-003-PR-1500 |  | Material Fabrication for Lighting poles - Stage 3 | 20d | 2026-06-08 A | 2026-06-09 A | MKH2-02-003-PR-1490 | 100% |  | 2026-07-11 | 2026-08-02 |  |  | Purchaser [650 h] |  |  | MAK-01-PR-LLI-1150 | EW2 |
| MKH2-02-003-PR-1510 |  | Material Delivery for Lighting poles 1st lot | 22d | 2026-06-10 A | 2026-06-18 A | MKH2-02-003-PR-1500 | 100% |  | 2026-08-03 | 2026-08-27 |  |  | Purchaser [850 h]; Cost for Proc [1] | 734,477.92 | 734,477.92 | MAK-01-PR-LLI-1160 | EW2 |
| MKH2-02-003-PR-1530 |  | Staging Time for Street Light poles | 9d | 2026-06-10 A | 2026-11-12 | MKH2-02-003-PR-1510, MKH2-02-003-PR-1520 |  | 8d | 2026-09-08 | 2026-09-17 | 30d | 38d | Purchaser [650 h] |  |  | MAK-01-PR-LLI-1171 | EW2 |
| MKH2-02-003-PR-1520 |  | Material Delivery for Lighting poles 2nd lot | 9d | 2026-06-18 A | 2026-06-25 A | MKH2-02-003-PR-1510 | 100% |  | 2026-07-15 | 2026-07-25 |  |  | Purchaser [650 h]; Cost for Proc [1] | 734,477.92 | 734,477.92 | MAK-01-PR-LLI-1170 | EW2 |

| ID | WBS | Activity | Duration | Start | Finish | Predecessors | Complete | Remaining | Planned start | Planned finish | Total float | Free float | Resources | Cost | Actual cost | Old Activity ID - MK | Procurement | Construction |
| --- | --- | --- | --- | --- | --- | --- | --- | --- | --- | --- | --- | --- | --- | --- | --- | --- | --- | --- |
|  | PANN | **PANNELS & FEEDER PILLERS** |  | 2026-05-25 | 2026-08-29 |  |  |  |  |  |  |  |  |  |  |  |  |  |
| MKH2-02-003-PR-1540 |  | PO for Lighting Panels/Feeder Pillers | 3d | 2026-05-25 A | 2026-05-26 A | MKH2-02-003-EN-2160, MKH2-02-003-EN-2200 | 100% |  | 2026-06-17 | 2026-06-20 |  |  | Purchaser [650 h] |  |  | MAK-01-PR-LLI-1180 | EW2 |  |
| MKH2-02-003-PR-1550 |  | Material Fabrication for Lighting Panels/Feeder Pillers - Stage 1 | 20d | 2026-06-10 A | 2026-06-11 A | MKH2-02-003-PR-1540 | 100% |  | 2026-06-21 | 2026-07-13 |  |  | Purchaser [650 h] |  |  | MAK-01-PR-LLI-1190 | EW2 |  |
| MKH2-02-003-PR-1560 |  | Material Fabrication for Lighting Panels/Feeder Pillers - Stage 2 | 20d | 2026-08-13 A | 2026-08-15 A | MKH2-02-003-PR-1550 | 100% |  | 2026-08-26 | 2026-09-17 |  |  | Purchaser [850 h] |  |  | MAK-01-PR-LLI-1200 | EW2 |  |
| MKH2-02-003-PR-1570 |  | Material Fabrication for Lighting Panels/Feeder Pillers - Stage 3 | 20d | 2026-08-15 A | 2026-08-16 A | MKH2-02-003-PR-1560 | 100% |  | 2026-09-19 | 2026-10-12 |  |  | Purchaser [850 h] |  |  | MAK-01-PR-LLI-1210 | EW2 |  |
| MKH2-02-003-PR-1580 |  | Material Delivery for Lighting Panels/Feeder Pillers 1st lot | 22d | 2026-08-20 A | 2026-08-29 A | MKH2-02-003-PR-1570 | 100% |  | 2026-10-13 | 2026-11-07 |  |  | Purchaser [850 h]; Cost for Proc [1] | 734,477.92 | 734,477.92 | MAK-01-PR-LLI-1220 | EW2 |  |
| MKH2-02-003-PR-1600 |  | Staging Time for Lighting Panels/Feeder Pillers | 9d | 2026-08-20 A | 2026-08-29 A | MKH2-02-003-PR-1590, MKH2-02-003-PR-1530, MKH2-02-003-PR-1460 | 100% |  | 2026-11-22 | 2026-12-01 |  |  | Purchaser [650 h] |  |  | MAK-01-PR-LLI-1231 | EW2 |  |
| MKH2-02-003-PR-1590 |  | Material Delivery for Lighting Panels/Feeder Pillers 2nd lot | 8d | 2026-08-26 A | 2026-08-29 A | MKH2-02-003-PR-1580 | 100% |  | 2026-09-09 | 2026-09-17 |  |  | Purchaser [650 h]; Cost for Proc [1] | 734,477.92 | 734,477.92 | MAK-01-PR-LLI-1230 | EW2 |  |
|  | LUM | **LUMINAIRE** |  | 2026-04-25 | 2027-01-14 |  |  |  |  |  |  |  |  |  |  |  |  |  |
| MKH2-02-003-PR-1610 |  | PO for Street Lighting Luminaire | 6d | 2026-04-25 A | 2026-04-26 A | MKH2-02-003-EN-2180 | 100% |  | 2026-05-13 | 2026-05-19 |  |  | Purchaser [650 h] |  |  | MAK-01-PR-LLI-1240 | EW2 |  |
| MKH2-02-003-PR-1620 |  | Material Fabrication for Street Lighting Luminaire - Stage 1 | 20d | 2026-04-27 A | 2026-04-30 A | MKH2-02-003-PR-1610 | 100% |  | 2026-05-20 | 2026-06-15 |  |  | Purchaser [650 h] |  |  | MAK-01-PR-LLI-1250 | EW2 |  |
| MKH2-02-003-PR-1630 |  | Material Fabrication for Street Lighting Luminaire - Stage 2 | 20d | 2026-06-06 A | 2026-06-07 A | MKH2-02-003-PR-1620 | 100% |  | 2026-06-17 | 2026-07-09 |  |  | Purchaser [650 h] |  |  | MAK-01-PR-LLI-1260 | EW2 |  |
| MKH2-02-003-PR-1640 |  | Material Fabrication for Street Lighting Luminaire - Stage 3 | 20d | 2026-06-08 A | 2026-06-09 A | MKH2-02-003-PR-1630, MKH2-02-003-PR-1250, MKH2-02-003-PR-1110 | 100% |  | 2026-08-02 | 2026-08-24 |  |  | Purchaser [650 h] |  |  | MAK-01-PR-LLI-1270 | EW2 |  |
| MKH2-02-003-PR-1650 |  | Material Delivery for Street Lighting Luminaire 1st lot | 22d | 2026-06-10 A | 2026-06-18 A | MKH2-02-003-PR-1640 | 100% |  | 2026-08-25 | 2026-09-19 |  |  | Purchaser [650 h]; Cost for Proc [1] | 734,477.92 | 734,477.92 | MAK-01-PR-LLI-1280 | EW2 |  |
| MKH2-02-003-PR-1670 |  | Staging Time for Street Lighting Luminaire | 9d | 2026-06-10 A | 2027-01-14 | MKH2-02-003-PR-1660 |  | 8d | 2026-10-01 | 2026-10-11 | -24d | 0d | Purchaser [650 h] |  |  | MAK-01-PR-LLI-1290 | EW2 |  |
| MKH2-02-003-PR-1660 |  | Material Delivery for Street Lighting Luminaire 2nd lot | 8d | 2026-06-20 A | 2026-06-25 A | MKH2-02-003-PR-1650, MKH2-02-003-PR-1390 | 100% |  | 2026-09-19 | 2026-09-28 |  |  | Purchaser [650 h]; Cost for Proc [80] | 734,477.92 | 734,477.92 | MAK-01-PR-LLI-1281 | EW2 |  |
|  | CONST | **CONSTRUCTION PHASE** |  | 2026-02-18 | 2027-07-24 |  |  |  |  |  |  |  |  |  |  |  |  |  |
|  | ROD | **ROADS** |  | 2026-02-18 | 2027-07-24 |  |  |  |  |  |  |  |  |  |  |  |  |  |
|  | ART-03 | **ARTERIAL-03 (2+510 to 4+267.54)** |  | 2026-02-18 | 2027-04-01 |  |  |  |  |  |  |  |  |  |  |  |  |  |
|  | BOX-1 | **Box Culvert - 1** |  | 2026-03-04 | 2026-08-22 |  |  |  |  |  |  |  |  |  |  |  |  |  |
| MKH2-02-003-CN-2030 |  | Excavation in (all types of soil) including all the required backfilling [Road-1 -ARTERIAL-03 (2+510 to 4+267.54) ] | 21d | 2026-03-04 A | 2026-04-30 A | MKH2-02-003-MB-1320, MKH2-02-003-MB-1080, MKH2-02-003-MB-1070, MKH2-02-003-EN-1310, MKH2-02-003-EN-1320, MKH2-02-003-EN-1330, MKH2-02-003-EN-1340, MKH2-02-003-EN-5040, MKH2-02-003-MB-1040 | 100% |  | 2026-04-16 | 2026-05-10 |  |  | Excavator [1600 h]; Truck [1500 h]; Compactor [740 h]; Driver [210 h]; Eq. Operator [1420 h]; Excavation in (all types of soil) including all the required backfilling [8526.42] | 255,792.6 | 255,792.6 | AI-2040 |  | OP1 |
| MKH2-02-003-CN-2050 |  | Plain Concrete for box culvert [Road-1 -ARTERIAL-03 (2+510 to 4+267.54) ] | 21d | 2026-05-07 A | 2026-05-09 A | MKH2-02-003-CN-2030, MKH2-02-003-EN-5120, MKH2-02-003-EN-5110, MKH2-02-003-EN-5100 | 100% |  | 2026-06-18 | 2026-07-12 |  |  | Labor [1050 h]; Mason [8220 h]; Plain Concrete for box culvert [136.68] | 61,506 | 61,506 | AI-2060 |  | OP1 |
| MKH2-02-003-CN-2070 |  | Steel Reinforcement for box culverts as per drawings and the Engineer's instructions [Road-1 -ARTERIAL-03 (2+510 to 4+26 | 21d | 2026-05-13 A | 2026-08-21 A | MKH2-02-003-CN-2050, MKH2-02-003-PR-1020 SS | 100% |  | 2026-06-25 | 2026-07-19 |  |  | Labor [1690 h]; Steel Fixer [210 h]; Steel Reinforcement for box culverts as per drawings and the Engineer's instructions [274.03] | 1,150,926 | 1,150,926 | AI-2075 |  | OP1 |
| MKH2-02-003-CN-2080 |  | Concrete for box culvert including bitumenous coating (Steel Reinforcement is measured separately) [Road-1 -ARTERIAL-03 | 21d | 2026-06-03 A | 2026-08-22 A | MKH2-02-003-CN-2070, MKH2-02-003-PR-1050, MKH2-02-003-PR-1080, MKH2-02-003-PR-1110, MKH2-02-003-EN-5090 | 100% |  | 2026-07-27 | 2026-08-19 |  |  | Truck [210 h]; Driver [210 h]; Carpenter [210 h]; Steel Fixer [210 h]; Mason [420 h]; Concrete for box culvert including bitumenous coating (Steel Reinforcement is measured separately) [1687.06] | 1,518,354 | 1,518,354 | AI-2080 |  | OP1 |

| ID | WBS | Activity | Duration | Start | Finish | Predecessors | Complete | Planned start | Planned finish | Total float | Free float | Resources | Cost | Actual cost | Old Activity ID - MK | Construction |
| --- | --- | --- | --- | --- | --- | --- | --- | --- | --- | --- | --- | --- | --- | --- | --- | --- |
|  | ART03 RD | **ARTERIAL-03-ROAD** |  | 2026-02-18 | 2027-04-01 |  |  |  |  |  |  |  |  |  |  |  |
|  | 2 | **ROADS & ROUNDABOUT** |  | 2026-02-18 | 2027-04-01 |  |  |  |  |  |  |  |  |  |  |  |
|  | 2 | **EARTHWORKS & SITE GRADING** |  | 2026-02-18 | 2026-04-18 |  |  |  |  |  |  |  |  |  |  |  |
| MKH2-02-003-CN-1050 |  | Roadway Excavation for cuttings ARTERIAL-03 Stage-1 | 15d | 2026-02-18 A | 2026-03-05 A | MKH2-02-003-CN-2030, MKH2-02-003-EN-1300, MKH2-02-003-EN-1310, MKH2-02-003-EN-1320, MKH2-02-003-EN-1330, MKH2-02-003-EN-1340, MKH2-02-003-EN-1350, MKH2-02-003-EN-1360, MKH2-02-003-EN-1370, MKH2-02-003-EN-1380 | 100% | 2026-04-29 | 2026-05-16 |  |  | Excavator [1100 h]; Loader [150 h]; Water Tanker [150 h]; Grader [150 h]; Truck [900 h]; Road Roller [150 h]; Labor [2800 h]; Driver [1050 h]; Eq. Operator [750 h]; Roadway Excavation for cuttings (all types of soil) [26886.2] | 537,723.78 | 537,723.78 | AI-1050 | RD1 |
| MKH2-02-003-CN-1150 |  | Embankments -ARTERIAL-03 | 15d | 2026-02-19 A | 2026-04-09 A | MKH2-02-003-CN-1080 | 100% | 2026-07-14 | 2026-07-30 |  |  | Loader [150 h]; Bulldozer [150 h]; Water Tanker [150 h]; Grader [150 h]; Truck [300 h]; Road Roller [150 h]; Driver [450 h]; Eq. Operator [600 h]; Embankments to the ROW In road Works [50559.5] | 910,071.24 | 910,071.24 | AI-1160 | RD1 |
| MKH2-02-003-CN-1060 |  | Roadway Excavation for cuttings ARTERIAL-03 Stage-2 | 15d | 2026-03-05 A | 2026-03-10 A | MKH2-02-003-CN-1050 | 100% | 2026-04-23 | 2026-05-10 |  |  | Excavator [300 h]; Loader [150 h]; Water Tanker [150 h]; Grader [150 h]; Truck [900 h]; Road Roller [150 h]; Labor [2500 h]; Driver [1050 h]; Eq. Operator [750 h]; Roadway Excavation for cuttings (all types of soil) [26886.2] | 537,724.04 | 537,724.04 | AI-1060 | RD1 |
| MKH2-02-003-CN-1070 |  | Roadway Excavation for cuttings ARTERIAL-03 Stage-3 | 15d | 2026-03-10 A | 2026-04-09 A | MKH2-02-003-CN-1060, MKH2-02-003-PR-1330 | 100% | 2026-05-31 | 2026-06-16 |  |  | Excavator [940 h]; Loader [150 h]; Water Tanker [150 h]; Grader [150 h]; Truck [900 h]; Road Roller [150 h]; Labor [3030 h]; Driver [1050 h]; Eq. Operator [750 h]; Roadway Excavation for cuttings (all types of soil) [26886.2] | 537,724.04 | 537,724.04 | AI-1070 | RD1 |
| MKH2-02-003-CN-1200 |  | Subgrade for ARTERIAL-03 | 15d | 2026-03-10 A | 2026-04-18 A | MKH2-02-003-CN-1150, MKH2-02-003-CN-2080 | 100% | 2026-08-08 | 2026-08-24 |  |  | Loader [150 h]; Water Tanker [150 h]; Grader [150 h]; Truck [150 h]; Road Roller [150 h]; Labor [900 h]; Driver [300 h]; Eq. Operator [450 h]; Subgrade [9012.17] | 198,267.74 | 198,267.74 | AI-1210 | RD1 |
| MKH2-02-003-CN-1080 |  | Roadway Excavation for cuttings ARTERIAL-03 Stage-4 | 15d | 2026-04-09 A | 2026-04-16 A | MKH2-02-003-CN-1070, MKH2-02-003-PR-1220, MKH2-02-003-PR-1190, MKH2-02-003-PR-1160 | 100% | 2026-07-12 | 2026-07-28 |  |  | Excavator [300 h]; Loader [150 h]; Water Tanker [150 h]; Grader [150 h]; Truck [900 h]; Road Roller [150 h]; Labor [600 h]; Driver [1050 h]; Eq. Operator [750 h]; Roadway Excavation for cuttings (all types of soil) [26886.2] | 537,724.04 | 537,724.04 | AI-1080 | RD1 |
|  | 1 | **ASPHALT WORKS** |  | 2026-03-14 | 2027-03-06 |  |  |  |  |  |  |  |  |  |  |  |
| MKH2-02-003-CN-1250 |  | Aggregate base course at ARTERIAL-03 | 20d | 2026-03-14 A | 2026-04-21 A | MKH2-02-003-CN-1200, MKH2-02-003-PR-1110 | 100% | 2026-08-25 | 2026-09-16 |  |  | Loader [200 h]; Water Tanker [200 h]; Grader [200 h]; Truck [200 h]; Road Roller [200 h]; Labor [200 h]; Driver [400 h]; Eq. Operator [600 h]; Aggregate base course [6008.56] | 300,428 | 300,428 | AI-1260 | RD1 |
| MKH2-02-003-CN-1300 |  | Prime Coat (MC1) ARTERIAL-03 | 14d | 2026-04-08 A | 2026-04-30 A | MKH2-02-003-CN-1250, MKH2-02-003-PR-1670, MKH2-02-003-PR-1600, MKH2-02-003-MS-1030 | 100% | 2026-09-27 | 2026-10-12 |  |  | Bituminous base course (Grading I - Class A), including Prime Coat [300.83] | 168,464.8 | 168,464.8 | AI-1310 | RD1 |
| MKH2-02-003-CN-1350 |  | Bituminous base course for ARTERIAL-03 | 21d | 2026-04-09 A | 2026-05-03 A | MKH2-02-003-CN-1300, MKH2-02-003-EN-5050 | 100% | 2026-10-13 | 2026-11-05 |  |  | Water Tanker [210 h]; Truck [1050 h]; Road Roller [1050 h]; Asphalte Paver [210 h]; Labor [1890 h]; Driver [1260 h]; Eq. Operator [1260 h]; Bituminous base course (Grading I - Class A), including Prime Coat [2704.12] | 1,514,307.2 | 1,514,307.25 | AI-1360 | RD1 |
| MKH2-02-003-CN-1400 |  | Tack coat at ARTERIAL-03 | 21d | 2027-01-16 | 2027-02-08 | MKH2-02-003-CN-1350, MKH2-02-003-CN-1690, MKH2-02-003-CN-1720 |  |  |  | -24d | 0d | Water Tanker [100 h]; Grader [100 h]; Truck [100 h]; Road Roller [100 h]; Asphalte Paver [100 h]; Labor [100 h]; Driver [200 h]; Eq. Operator [300 h]; Bituminous concrete wearing course including Tack coat [150.08] | 87,046.4 |  | AI-1410 | RD1 |
| MKH2-02-003-CN-1450 |  | Bituminous concrete wearing course, ARTERIAL-03 | 21d | 2027-02-09 | 2027-03-06 | MKH2-02-003-CN-1400, MKH2-02-003-PR-1130 |  |  |  | 2d | 0d | Water Tanker [210 h]; Truck [1050 h]; Road Roller [1050 h]; Asphalte Paver [210 h]; Labor [1890 h]; Driver [1260 h]; Eq. Operator [1260 h]; Bituminous concrete wearing course including Tack coat [1351.39] | 783,806.2 |  | AI-1460 | RD1 |
|  | FINIS | **FINISHING WORKS** |  | 2026-04-25 | 2027-04-01 |  |  |  |  |  |  |  |  |  |  |  |
| MKH2-02-003-CN-1500 |  | Installation of Precast Concrete curb at ARTERIAL-03 | 16d | 2026-04-25 A | 2026-08-18 A | MKH2-02-003-PR-1160, MKH2-02-003-CN-1450 | 100% | 2027-01-21 | 2027-02-08 |  |  | Labor [320 h]; Skilled Labor [320 h]; Driver; Eq. Operator; Precast Concrete Kerb, Type K1-A [5930.17]; Precast Concrete Kerb, Type K4 [2308.15]; Precast Concrete Kerb, Type K1-B [532.65] | 523,594.95 | 523,594.95 | AI-1510 | RD1 |
| MKH2-02-003-CN-1540 |  | 60mm thick - Interlocking block pavers for sidewalk/footpath ARTERIAL-03 | 17d | 2026-07-30 A | 2026-09-19 A | MKH2-02-003-CN-1500, MKH2-02-003-PR-1190 | 100% | 2027-03-16 | 2027-04-04 |  |  | Labor [1360 h]; Mason [680 h]; 60mm thick - Interlocking block pavers for sidewalk/footpath [11205.8] | 784,402.5 | 784,402.5 | AI-1550 | RD1 |
| MKH2-02-003-CN-1580 |  | Pavement markings [Road-1 -ARTERIAL-03 (2+510 to 4+267.54) ] | 10d | 2027-03-07 | 2027-03-21 | MKH2-02-003-CN-1540, MKH2-02-003-PR-1220, MKH2-02-003-EN-5070 |  |  |  | 2d | 0d | Labor [100 h]; Skilled Labor [100 h]; Retroreflective Thermoplastic White paiting and traffic lines [998.3]; Retroreflective Thermoplastic Yellow paiting and traffic lines [1497.45] | 89,847 |  | AI-1590 | RD1 |
| MKH2-02-003-CN-1630 |  | Installation of Traffic Signs [Road-1 -ARTERIAL-03 (2+510 to 4+267.54) ] | 10d | 2027-03-22 | 2027-04-01 | MKH2-02-003-CN-1580, MKH2-02-003-PR-1250, MKH2-02-003-EN-5060 |  |  |  | 2d | 15d | Labor [500 h]; Skilled Labor [200 h]; Traffic signs, ground mounted, Sheet Alumenium, (breakaway)Single post, with all accessories [13.4] | 22,780 |  | AI-1640 | RD1 |
|  | 1 | **ELECTRICAL** |  | 2026-04-01 | 2026-10-10 |  |  |  |  |  |  |  |  |  |  |  |
|  | 2 | **LV NETWORKS** |  | 2026-04-01 | 2026-10-04 |  |  |  |  |  |  |  |  |  |  |  |
| MKH2-02-003-CN-1890 |  | Installation of Road Crossing Ducts 2 ways at ARTERIAL-03 | 14d | 2026-04-01 A | 2026-04-23 A | MKH2-02-003-CN-1200, MKH2-02-003-EN-5100 | 100% | 2026-08-30 | 2026-09-14 |  |  | Truck [140 h]; Bobcat [140 h]; Compactor [140 h]; Labor [140 h]; Driver [140 h]; Eq. Operator [280 h]; Carpenter [140 h]; Steel Fixer [140 h]; Mason [140 h]; Electrician [140 h]; Road crossing ducts, 2 ways (2 x 150mm PVC) [24.12] | 7,236 | 7,236 | AI-1900 | EW1 |
| MKH2-02-003-CN-1920 |  | Installation of Road Crossing Ducts 4 ways at ARTERIAL-03 | 15d | 2026-04-09 A | 2026-04-25 A | MKH2-02-003-CN-1890, MKH2-02-003-PR-1670, MKH2-02-003-PR-1600, MKH2-02-003-MS-1030, MKH2-02-003-MS-1030 FF, MKH2-02-003-PR-1600 FF | 100% | 2026-09-17 | 2026-10-05 |  |  | Truck [150 h]; Bobcat [150 h]; Compactor [150 h]; Labor [150 h]; Driver [150 h]; Eq. Operator [300 h]; Carpenter [150 h]; Steel Fixer [150 h]; Mason [150 h]; Electrician [150 h]; Road crossing ducts, 4 ways (4 x 150mm PVC) [34.84] | 13,936 | 13,936 | AI-1930 | EW1 |
| MKH2-02-003-CN-1940 |  | Installation of Road Crossing Ducts 6 ways at ARTERIAL-03 | 14d | 2026-06-10 A | 2026-06-11 A | MKH2-02-003-CN-1920, MKH2-02-003-PR-1280 SS | 100% | 2026-11-01 | 2026-11-16 |  |  | Truck [140 h]; Bobcat [140 h]; Compactor [140 h]; Labor [140 h]; Driver [140 h]; Eq. Operator [280 h]; Carpenter [140 h]; Steel Fixer [140 h]; Mason [140 h]; Electrician [140 h]; Road crossing ducts, 6 ways (6 x 150mm PVC) [13.4] | 8,710 | 8,710 | AI-1950 | EW1 |
| MKH2-02-003-CN-1950 |  | Drawpit with medium duty steel cover for ARTERIAL-3 Road size600x600x1000mm | 16d | 2026-09-03 A | 2026-09-23 A | MKH2-02-003-CN-1940 | 100% | 2026-12-07 | 2026-12-24 |  |  | Truck [160 h]; Compactor [160 h]; Skilled Labor [160 h]; Driver [160 h]; Eq. Operator [160 h]; Steel Fixer [160 h]; Mason [160 h]; Plumber [160 h]; Drawpit with medium duty steel cover, size600x600x1000mm [7.37] | 44,220 | 44,220 | AI-1960 | EW1 |
| MKH2-02-003-CN-1970 |  | Drawpit with medium duty steel cover, for ARTERIAL-3 Road size 900x900x1200mm | 15d | 2026-09-05 A | 2026-09-08 A | MKH2-02-003-CN-1920, MKH2-02-003-CN-1940, MKH2-02-003-CN-1950, MKH2-02-003-CN-1350 | 100% | 2026-12-26 | 2027-01-11 |  |  | Truck [150 h]; Compactor [150 h]; Skilled Labor [150 h]; Driver [150 h]; Eq. Operator [150 h]; Steel Fixer [150 h]; Mason [150 h]; Plumber [150 h]; Drawpit with medium duty steel cover, size 900x900x1200mm [2.01] | 24,120 | 24,120 | AI-1980 | EW1 |
| MKH2-02-003-CN-2010 |  | Street Lighting panels [Road-1 -ARTERIAL-03 (2+510 to 4+267.54) ] | 8d | 2026-09-24 A | 2026-09-26 A | MKH2-02-003-CN-2000 | 100% | 2027-01-23 | 2027-01-31 |  |  | Labor [20 h]; Skilled Labor [10 h]; Electrician [10 h]; Street Lighting panels [2.01] | 56,280 | 56,280 | AI-2025 | EW1 |
| MKH2-02-003-CN-2000 |  | Feeder pillars [Road-1 -ARTERIAL-03 (2+510 to 4+267.54) ] | 12d | 2026-10-01 A | 2026-10-04 A | MKH2-02-003-CN-1970 | 100% | 2026-12-28 | 2027-01-10 |  |  | Labor [240 h]; Skilled Labor [120 h]; Electrician [120 h]; Feeder pillars [0.67] | 20,100 | 20,100 | AI-2020 | EW1 |

| ID | WBS | Activity | Duration | Start | Finish | Predecessors | Complete | Remaining | Planned start | Planned finish | Total float | Free float | Resources | Cost | Actual cost | Old Activity ID - MK | Construction |
| --- | --- | --- | --- | --- | --- | --- | --- | --- | --- | --- | --- | --- | --- | --- | --- | --- | --- |
|  | 1 | **LV CABLES** |  | 2026-06-25 | 2026-08-20 |  |  |  |  |  |  |  |  |  |  |  |  |
| MKH2-02-003-CN-1690 |  | Installation of Low Voltage Cables -ARTERIAL-03 Stage-1 | 21d | 2026-06-25 A | 2026-07-16 A | MKH2-02-003-PR-1390, MKH2-02-003-EN-1390, MKH2-02-003-CN-1890, MKH2-02-003-EN-5110 | 100% |  | 2026-09-08 | 2026-10-03 |  |  | Excavator [210 h]; Truck [210 h]; Bobcat [210 h]; Compactor [210 h]; Labor [420 h]; Driver [210 h]; Eq. Operator [630 h]; Electrician [420 h]; Cable, Copper 4Cx16mm2 +1Cx10mm2 CU/XLPE/SWA/PVC [949.89]; Cable, Copper 4Cx50mm2 +1Cx25mm2 CU/XLPE/SWA/PVC [117.18]; Cable, Copper 4Cx95mm2 +1Cx50mm2 CU/XLPE/SWA/PVC [71.02] | 106,174.9 | 106,174.91 | AI-1700 | EW1 |
| MKH2-02-003-CN-1700 |  | Installation of Low Voltage Cables -ARTERIAL-03 Stage-2 | 21d | 2026-08-06 A | 2026-08-08 A | MKH2-02-003-CN-1690, MKH2-02-003-PR-1600 | 100% |  | 2026-11-21 | 2026-12-14 |  |  | Excavator [210 h]; Truck [210 h]; Bobcat [210 h]; Compactor [210 h]; Labor [420 h]; Driver [210 h]; Eq. Operator [630 h]; Electrician [420 h]; Cable, Copper 4Cx16mm2 +1Cx10mm2 CU/XLPE/SWA/PVC [949.89]; Cable, Copper 4Cx50mm2 +1Cx25mm2 CU/XLPE/SWA/PVC [117.18]; Cable, Copper 4Cx95mm2 +1Cx50mm2 CU/XLPE/SWA/PVC [71.02] | 106,174.9 | 106,174.9 | AI-1710 | EW1 |
| MKH2-02-003-CN-1710 |  | Installation of Low Voltage Cables -ARTERIAL-03 Stage-3 | 16d | 2026-08-08 A | 2026-08-09 A | MKH2-02-003-CN-1700, MKH2-02-003-PR-1460 | 100% |  | 2026-12-15 | 2027-01-02 |  |  | Excavator [160 h]; Truck [160 h]; Bobcat [160 h]; Compactor [160 h]; Labor [320 h]; Driver [160 h]; Eq. Operator [480 h]; Electrician [320 h]; Cable, Copper 4Cx16mm2 +1Cx10mm2 CU/XLPE/SWA/PVC [949.89]; Cable, Copper 4Cx50mm2 +1Cx25mm2 CU/XLPE/SWA/PVC [117.18]; Cable, Copper 4Cx95mm2 +1Cx50mm2 CU/XLPE/SWA/PVC [71.02] | 106,174.9 | 106,174.9 | AI-1720 | EW1 |
| MKH2-02-003-CN-1720 |  | Installation of Low Voltage Cables -ARTERIAL-03 Stage-4 | 16d | 2026-08-17 A | 2026-08-20 A | MKH2-02-003-CN-1710 | 100% |  | 2026-11-28 | 2026-12-15 |  |  | Excavator [160 h]; Truck [160 h]; Bobcat [160 h]; Compactor [160 h]; Labor [320 h]; Driver [160 h]; Eq. Operator [480 h]; Electrician [320 h]; Cable, Copper 4Cx16mm2 +1Cx10mm2 CU/XLPE/SWA/PVC [949.89]; Cable, Copper 4Cx50mm2 +1Cx25mm2 CU/XLPE/SWA/PVC [117.18]; Cable, Copper 4Cx95mm2 +1Cx50mm2 CU/XLPE/SWA/PVC [71.02] | 106,174.9 | 106,174.9 | AI-1730 | EW1 |
|  | 3 | **STREET LIGHTING NETWORK INCLUDING ALL** |  | 2026-06-10 | 2026-07-18 |  |  |  |  |  |  |  |  |  |  |  |  |
| MKH2-02-003-CN-1770 |  | Installation of Lighting Poles 2-Arms ARTERIAL-03 | 18d | 2026-06-10 A | 2026-07-18 A | MKH2-02-003-CN-1720, MKH2-02-003-PR-1530, MKH2-02-003-EN-1400, MKH2-02-003-EN-1420, MKH2-02-003-EN-1430, MKH2-02-003-EN-1440, MKH2-02-003-EN-1450, MKH2-02-003-EN-5120 | 100% |  | 2027-01-02 | 2027-01-21 |  |  | Excavator [180 h]; Truck [180 h]; Crane [180 h]; Labor [540 h]; Driver [180 h]; Eq. Operator [360 h]; Carpenter [180 h]; Steel Fixer [180 h]; Mason [180 h]; Electrician [540 h]; Lighting poles with 2 arms, height of ( 16 ) meters [54.27] | 434,160 | 434,160 | AI-1780 | EW1 |
| MKH2-02-003-CN-1810 |  | Installation of Lighting Luminaires for 2-Arms ARTERIAL-03 | 18d | 2026-06-14 A | 2026-07-18 A | MKH2-02-003-CN-1770, MKH2-02-003-PR-1670 | 100% |  | 2027-01-23 | 2027-02-11 |  |  | Crane [180 h]; Labor [540 h]; Skilled Labor [360 h]; Driver; Eq. Operator [180 h]; Electrician [540 h]; Street Lighting( LED) Luminaire of Output = 36385 lumen complete with control gear and lamp, (262) WATT. [108.54] | 173,664 | 173,664 | AI-1820 | EW1 |
|  | 4 | **EARTHING** |  | 2026-09-30 | 2026-10-10 |  |  |  |  |  |  |  |  |  |  |  |  |
| MKH2-02-003-CN-1850 |  | Installation of Earthing System for ARTERIAL-03 | 12d | 2026-09-30 A | 2026-10-10 A | MKH2-02-003-CN-1810, MKH2-02-003-PR-1310, MKH2-02-003-EN-1410 | 100% |  | 2026-12-21 | 2027-01-03 |  |  | Labor [240 h]; Driver; Eq. Operator; Electrician [120 h]; Including earthing of lighting poles ,masts. feeder pillars , unit substations, L.V feeders and KWH meter. [6.7] | 10,050 | 10,050 | AI-1860 | EW1 |
|  | ART-04 | **ARTERIAL-04 (0+000 to 1+0.83)** |  | 2026-03-10 | 2027-05-23 |  |  |  |  |  |  |  |  |  |  |  |  |
|  | BOX-2 | **Box Culvert - 2** |  | 2026-03-25 | 2026-08-05 |  |  |  |  |  |  |  |  |  |  |  |  |
| MKH2-02-003-CN-2040 |  | Excavation in (all types of soil) including all the required backfilling [Road-2 -ARTERIAL-04 (0+000 to 1+083) ] | 21d | 2026-03-25 A | 2026-03-31 A | MKH2-02-003-CN-1060 | 100% |  | 2026-05-04 | 2026-05-31 |  |  | Excavator [1030 h]; Truck [1210 h]; Compactor [210 h]; Driver [210 h]; Eq. Operator [420 h]; Excavation in (all types of soil) including all the required backfilling [2784.52] | 83,535.6 | 83,535.6 | AI-2050 | OP1 |
| MKH2-02-003-CN-2060 |  | Plain Concrete for box culvert [Road-2 -ARTERIAL-04 (0+000 to 1+083) ] | 20d | 2026-04-07 A | 2026-04-07 A | MKH2-02-003-CN-2040 | 100% |  | 2026-05-18 | 2026-06-13 |  |  | Labor [1000 h]; Mason [400 h]; Plain Concrete for box culvert [44.22] | 19,899 | 19,899 | AI-2070 | OP1 |
| MKH2-02-003-CN-2090 |  | Steel Reinforcement for box culverts as per drawings and the Engineer's instructions [Road-1 -ARTERIAL-03 (2+510 to 4+26 | 21d | 2026-04-09 A | 2026-08-05 A | MKH2-02-003-CN-2060, MKH2-02-003-CN-2080 | 100% |  | 2026-08-03 | 2026-08-26 |  |  | Labor [1050 h]; Steel Fixer [420 h]; Steel Reinforcement for box culverts as per drawings and the Engineer's instructions [89.11] | 374,262 | 374,262 | AI-2101 | OP1 |
| MKH2-02-003-CN-2120 |  | Concrete for box culvert including bitumenous coating (Steel Reinforcement is measured separately) [Road-2 -ARTERIAL-04 | 20d | 2026-04-28 A | 2026-08-03 A | MKH2-02-003-CN-2090 | 100% |  | 2026-09-17 | 2026-10-11 |  |  | Truck [9 h]; Driver [9 h]; Carpenter [9 h]; Steel Fixer [9 h]; Mason [18 h]; Concrete for box culvert including bitumenous coating (Steel Reinforcement is measured separately) [550.74] | 495,666 | 495,666 | AI-2121 | OP1 |
|  | ART04 RD | **ARTERIAL-04-ROAD** |  | 2026-03-10 | 2027-05-23 |  |  |  |  |  |  |  |  |  |  |  |  |
|  | 3 | **ROADS** |  | 2026-03-10 | 2027-04-29 |  |  |  |  |  |  |  |  |  |  |  |  |
|  | 3 | **EARTHWORKS & SITE GRADING** |  | 2026-03-10 | 2026-11-23 |  |  |  |  |  |  |  |  |  |  |  |  |
| MKH2-02-003-CN-1090 |  | Roadway Excavation for cuttings ARTERIAL-04 Stage-1 | 20d | 2026-03-10 A | 2026-05-16 A | MKH2-02-003-CN-2040 | 100% |  | 2026-06-17 | 2026-07-09 |  |  | Excavator [400 h]; Loader [200 h]; Water Tanker [200 h]; Grader [200 h]; Truck [1200 h]; Road Roller [200 h]; Labor [800 h]; Driver [1400 h]; Eq. Operator [1000 h]; Roadway Excavation for cuttings (all types of soil) [45592.4] | 911,848.83 | 911,848.83 | AI-1090 | RD1 |
| MKH2-02-003-CN-1160 |  | Embankments -ARTERIAL-04 | 18d | 2026-04-20 A | 2026-11-23 | MKH2-02-003-CN-1100 | 95% | 9d | 2026-07-21 | 2026-08-10 | 42d | 0d | Loader [180 h]; Bulldozer [180 h]; Water Tanker [180 h]; Grader [180 h]; Truck [360 h]; Road Roller [180 h]; Driver [540 h]; Eq. Operator [720 h]; Embankments to the ROW In road Works [42868.3] | 771,629.31 | 733,047.85 | AI-1170 | RD1 |
| MKH2-02-003-CN-1210 |  | Subgrade for ARTERIAL-04 | 20d | 2026-04-25 A | 2026-07-29 A | MKH2-02-003-CN-1160 | 100% |  | 2026-08-11 | 2026-09-02 |  |  | Loader [200 h]; Water Tanker [200 h]; Grader [200 h]; Truck [200 h]; Road Roller [200 h]; Labor [1200 h]; Driver [400 h]; Eq. Operator [600 h]; Subgrade [7641.35] | 168,109.7 | 168,109.7 | AI-1220 | RD1 |
| MKH2-02-003-CN-1100 |  | Roadway Excavation for cuttings ARTERIAL-04 Stage-2 | 20d | 2026-05-20 A | 2026-11-12 | MKH2-02-003-CN-1090 | 98% | 8d | 2026-06-16 | 2026-07-08 | 42d | 0d | Excavator [400 h]; Loader [200 h]; Water Tanker [200 h]; Grader [200 h]; Truck [1200 h]; Road Roller [200 h]; Labor [800 h]; Driver [1400 h]; Eq. Operator [1000 h]; Roadway Excavation for cuttings (all types of soil) [45592.4] | 911,848.83 | 893,611.85 | AI-1100 | RD1 |
|  | 2 | **ASPHALT WORKS** |  | 2026-05-20 | 2027-03-24 |  |  |  |  |  |  |  |  |  |  |  |  |
| MKH2-02-003-CN-1260 |  | Aggregate base course at ARTERIAL-04 | 16d | 2026-05-20 A | 2026-08-05 A | MKH2-02-003-CN-1210 | 100% |  | 2026-08-09 | 2026-08-26 |  |  | Loader [160 h]; Water Tanker [160 h]; Grader [160 h]; Truck [160 h]; Road Roller [160 h]; Labor [160 h]; Driver [320 h]; Eq. Operator [480 h]; Aggregate base course [5094.68] | 254,734 | 254,734 | AI-1270 | RD1 |
| MKH2-02-003-CN-1310 |  | Prime Coat (MC1) ARTERIAL-04 | 15d | 2026-05-25 A | 2026-08-09 A | MKH2-02-003-CN-1260 | 100% |  | 2026-08-13 | 2026-08-30 |  |  | Water Tanker [150 h]; Grader [150 h]; Truck [150 h]; Road Roller [150 h]; Asphalte Paver [150 h]; Labor [150 h]; Driver [300 h]; Eq. Operator [450 h]; Bituminous base course (Grading I - Class A), including Prime Coat [254.6] | 142,576 | 142,576 | AI-1320 | RD1 |
| MKH2-02-003-CN-1360 |  | Bituminous base course for ARTERIAL-04 | 20d | 2026-05-31 A | 2026-08-13 A | MKH2-02-003-CN-1310 | 100% |  | 2026-08-31 | 2026-09-22 |  |  | Water Tanker [180 h]; Truck [900 h]; Road Roller [900 h]; Asphalte Paver [180 h]; Labor [1620 h]; Driver [1080 h]; Eq. Operator [1080 h]; Bituminous base course (Grading I - Class A), including Prime Coat [2293.41] | 1,284,309.6 | 1,284,309.6 | AI-1370 | RD1 |
| MKH2-02-003-CN-1410 |  | Tack coat at ARTERIAL-04 | 14d | 2027-02-09 | 2027-02-25 | MKH2-02-003-CN-1360, MKH2-02-003-CN-1400 |  |  |  |  | -24d | 0d | Water Tanker [140 h]; Grader [140 h]; Truck [140 h]; Road Roller [140 h]; Asphalte Paver [140 h]; Labor [140 h]; Driver [280 h]; Eq. Operator [420 h]; Bituminous concrete wearing course including Tack coat [127.3] | 73,834 |  | AI-1420 | RD1 |
| MKH2-02-003-CN-1460 |  | Bituminous concrete wearing course, ARTERIAL-04 | 20d | 2027-02-27 | 2027-03-24 | MKH2-02-003-CN-1410 |  |  |  |  | -24d | 0d | Water Tanker [200 h]; Truck [1000 h]; Road Roller [1000 h]; Asphalte Paver [200 h]; Labor [1800 h]; Driver [1200 h]; Eq. Operator [1200 h]; Bituminous concrete wearing course including Tack coat [1146.37] | 664,894.6 |  | AI-1470 | RD1 |

| ID | WBS | Activity | Duration | Start | Finish | Predecessors | Complete | Remaining | Planned start | Planned finish | Total float | Free float | Resources | Cost | Actual cost | Old Activity ID - MK | Construction |
| --- | --- | --- | --- | --- | --- | --- | --- | --- | --- | --- | --- | --- | --- | --- | --- | --- | --- |
|  | 1 | **FINISHING WORKS** |  | 2026-09-05 | 2027-04-29 |  |  |  |  |  |  |  |  |  |  |  |  |
| MKH2-02-003-CN-1510 |  | Installation of Precast Concrete curb at ARTERIAL-04 | 8d | 2026-09-05 A | 2027-04-03 | MKH2-02-003-CN-1400, MKH2-02-003-CN-1460 | 80% | 8d | 2027-02-02 | 2027-02-10 | -24d | 0d | Labor [160 h]; Skilled Labor [160 h]; Driver; Eq. Operator; Precast Concrete Kerb, Type K1-A [3021.03]; Precast Concrete Kerb, Type K4 [1175.85]; Precast Concrete Kerb, Type K1-B [271.35] | 266,737.05 | 213,389.64 | AI-1520 | RD1 |
| MKH2-02-003-CN-1550 |  | 60mm thick - Interlocking block pavers for sidewalk/footpath ARTERIAL-04 | 12d | 2026-09-19 A | 2027-04-07 | MKH2-02-003-CN-1510 | 75% | 4d | 2027-02-27 | 2027-03-15 | -24d | 0d | Labor [960 h]; Mason [480 h]; 60mm thick - Interlocking block pavers for sidewalk/footpath [5733.19] | 401,323.3 | 300,992.48 | AI-1560 | RD1 |
| MKH2-02-003-CN-1590 |  | Pavement markings [Road-2 -ARTERIAL-04 (0+000 to 1+083) ] | 9d | 2027-04-08 | 2027-04-18 | MKH2-02-003-CN-1550 |  |  |  |  | -2d | 0d | Labor [90 h]; Skilled Labor [90 h]; Retroreflective Thermoplastic White paiting and traffic lines [846.88]; Retroreflective Thermoplastic Yellow paiting and traffic lines [1269.65] | 76,195.08 |  | AI-1600 | RD1 |
| MKH2-02-003-CN-1640 |  | Installation of Traffic Signs [Road-2 -ARTERIAL-04 (0+000 to 1+083) ] | 10d | 2027-04-19 | 2027-04-29 | MKH2-02-003-CN-1590 |  |  |  |  | -2d | 0d | Labor [500 h]; Skilled Labor [200 h]; Traffic signs, ground mounted, Sheet Alumenium, (breakaway)Single post, with all accessories [6.03] | 10,251 |  | AI-1650 | RD1 |
|  | 6 | **ELECTRICAL WORKS (MKH2-01-007-DAR-TS8-0-SL-DWG-1010-00)** |  | 2026-06-03 | 2027-05-23 |  |  |  |  |  |  |  |  |  |  |  |  |
|  | 2 | **LV NETWORKS** |  | 2026-06-03 | 2027-01-31 |  |  |  |  |  |  |  |  |  |  |  |  |
| MKH2-02-003-CN-1900 |  | Installation of Road Crossing Ducts 2 ways at ARTERIAL-04 Stage-1 | 21d | 2026-06-03 A | 2026-06-04 A | MKH2-02-003-CN-1210, MKH2-02-003-CN-2120 | 100% |  | 2026-09-21 | 2026-10-15 |  |  | Truck [210 h]; Bobcat [210 h]; Compactor [210 h]; Labor [210 h]; Driver [210 h]; Eq. Operator [420 h]; Carpenter [210 h]; Steel Fixer [210 h]; Mason [210 h]; Electrician [210 h]; Road crossing ducts, 2 ways (2 x 150mm PVC) [48.24] | 14,472 | 14,472 | AI-1910 | EW1 |
| MKH2-02-003-CN-1930 |  | Installation of Road Crossing Ducts 4 ways at ARTERIAL-04 | 21d | 2026-06-03 A | 2026-08-08 A | MKH2-02-003-CN-1910 | 100% |  | 2026-11-10 | 2026-12-03 |  |  | Truck [210 h]; Bobcat [210 h]; Compactor [210 h]; Labor [210 h]; Driver [210 h]; Eq. Operator [420 h]; Carpenter [210 h]; Steel Fixer [210 h]; Mason [210 h]; Electrician [210 h]; Road crossing ducts, 4 ways (4 x 150mm PVC) [12.06] | 4,824 | 4,824 | AI-1940 | EW1 |
| MKH2-02-003-CN-1910 |  | Installation of Road Crossing Ducts 2 ways at ARTERIAL-04 Stage-2 | 21d | 2026-08-05 A | 2026-08-07 A | MKH2-02-003-CN-1900 | 100% |  | 2026-09-30 | 2026-10-24 |  |  | Truck [210 h]; Bobcat [210 h]; Compactor [210 h]; Labor [210 h]; Driver [210 h]; Eq. Operator [420 h]; Carpenter [210 h]; Steel Fixer [210 h]; Mason [210 h]; Electrician [210 h]; Road crossing ducts, 2 ways (2 x 150mm PVC) [48.24] | 14,472 | 14,472 | AI-1920 | EW1 |
| MKH2-02-003-CN-1960 |  | Drawpit with medium duty steel cover for ARTERIAL-4 Road size600x600x1000mm | 11d | 2026-09-16 A | 2026-10-05 A | MKH2-02-003-CN-1930, MKH2-02-003-CN-2010, MKH2-02-003-CN-1360 | 100% |  | 2027-01-25 | 2027-02-06 |  |  | Truck [110 h]; Compactor [110 h]; Skilled Labor [110 h]; Driver [110 h]; Eq. Operator [110 h]; Steel Fixer [110 h]; Mason [110 h]; Plumber [110 h]; Drawpit with medium duty steel cover, size600x600x1000mm [3.35] | 20,100 | 20,100 | AI-1970 | EW1 |
| MKH2-02-003-CN-1980 |  | Drawpit with medium duty steel cover, for ARTERIAL-4 Road size 900x900x1200mm | 11d | 2026-09-16 A | 2026-09-24 A | MKH2-02-003-CN-1930, MKH2-02-003-CN-1960, MKH2-02-003-MS-1040 | 100% |  | 2027-02-24 | 2027-03-08 |  |  | Truck [110 h]; Compactor [110 h]; Skilled Labor [110 h]; Driver [110 h]; Eq. Operator [110 h]; Steel Fixer [110 h]; Mason [110 h]; Plumber [110 h]; Drawpit with medium duty steel cover, size 900x900x1200mm [3.35] | 40,200 | 40,200 | AI-1990 | EW1 |
| MKH2-02-003-CN-1990 |  | Street Lighting panels [Road-2 -ARTERIAL-04 (0+000 to 1+083) ] | 18d | 2026-09-26 A | 2026-09-27 A | MKH2-02-003-CN-1980, MKH2-02-003-CN-1810 | 100% |  | 2027-02-20 | 2027-03-16 |  |  | Labor [360 h]; Skilled Labor [180 h]; Electrician [180 h]; Street Lighting panels [0.67] | 18,760 | 18,760 | AI-2010 | EW1 |
| MKH2-02-003-CN-2020 |  | Supply and installation of KWH meter mounting frame including concrete block for installation of KWH meter according to | 14d | 2027-01-16 | 2027-01-31 | MKH2-02-003-CN-1990 |  |  |  |  | 42d | 0d | Labor [280 h]; Skilled Labor [140 h]; Electrician [140 h]; Supply and installation of KWH meter [0.67] | 8,040 |  | AI-2030 | EW1 |
|  | 1 | **LV CABLES** |  | 2026-08-20 | 2027-02-15 |  |  |  |  |  |  |  |  |  |  |  |  |
| MKH2-02-003-CN-1730 |  | Installation of Low Voltage Cables -ARTERIAL-04 Stage-1 | 12d | 2026-08-20 A | 2026-08-24 A | MKH2-02-003-CN-2020 | 100% |  | 2027-04-04 | 2027-04-17 |  |  | Excavator [120 h]; Truck [120 h]; Bobcat [120 h]; Compactor [120 h]; Labor [240 h]; Driver [120 h]; Eq. Operator [360 h]; Electrician [240 h]; Cable, Copper 4Cx16mm2 +1Cx10mm2 CU/XLPE/SWA/PVC [967.82]; Cable, Copper 4Cx50mm2 +1Cx25mm2 CU/XLPE/SWA/PVC [119.39]; Cable, Copper 4Cx95mm2 +1Cx50mm2 CU/XLPE/SWA/PVC [72.36] | 108,178.2 | 108,178.2 | AI-1740 | EW1 |
| MKH2-02-003-CN-1740 |  | Installation of Low Voltage Cables -ARTERIAL-04 Stage-2 | 13d | 2026-08-24 A | 2027-02-15 | MKH2-02-003-CN-1730 | 90% | 13d | 2027-04-20 | 2027-05-04 | 42d | 0d | Excavator [130 h]; Truck [130 h]; Bobcat [130 h]; Compactor [130 h]; Labor [260 h]; Driver [130 h]; Eq. Operator [390 h]; Electrician [260 h]; Cable, Copper 4Cx16mm2 +1Cx10mm2 CU/XLPE/SWA/PVC [967.82]; Cable, Copper 4Cx50mm2 +1Cx25mm2 CU/XLPE/SWA/PVC [119.39]; Cable, Copper 4Cx95mm2 +1Cx50mm2 CU/XLPE/SWA/PVC [72.36] | 108,178.2 | 97,360.39 | AI-1750 | EW1 |
|  | 3 | **STREET LIGHTING NETWORK INCLUDING ALL** |  | 2026-08-18 | 2027-05-13 |  |  |  |  |  |  |  |  |  |  |  |  |
| MKH2-02-003-CN-1780 |  | Installation of Lighting Poles 2-Arms ARTERIAL-04 | 15d | 2026-08-18 A | 2027-03-06 | MKH2-02-003-CN-1740 | 90% | 15d | 2027-05-03 | 2027-05-23 | 42d | 44d | Excavator [150 h]; Truck [150 h]; Crane [150 h]; Labor [450 h]; Driver [150 h]; Eq. Operator [300 h]; Carpenter [150 h]; Steel Fixer [150 h]; Mason [150 h]; Electrician [450 h]; Lighting poles with 2 arms, height of ( 16 ) meters [27.47] | 219,760 | 197,784 | AI-1790 | EW1 |
| MKH2-02-003-CN-1820 |  | Installation of Lighting Luminaires for 2-Arms ARTERIAL-04 | 12d | 2026-08-22 A | 2027-05-13 | MKH2-02-003-CN-1780, MKH2-02-003-CN-1640 | 90% | 12d | 2027-05-26 | 2027-06-08 | -2d | 0d | Crane [120 h]; Labor [360 h]; Skilled Labor [240 h]; Driver; Eq. Operator [120 h]; Electrician [360 h]; Street Lighting( LED) Luminaire of Output = 36385 lumen complete with control gear and lamp, (262) WATT. [54.94] | 87,904 | 79,113.6 | AI-1830 | EW1 |
|  | 4 | **EARTHING** |  | 2026-09-30 | 2027-05-23 |  |  |  |  |  |  |  |  |  |  |  |  |
| MKH2-02-003-CN-1860 |  | Installation of Earthing System for ARTERIAL-04 | 20d | 2026-09-30 A | 2027-05-23 | MKH2-02-003-CN-1820 | 80% | 5d | 2027-05-23 | 2027-06-14 | -2d | 0d | Labor [400 h]; Driver; Eq. Operator; Electrician [200 h]; Including earthing of lighting poles ,masts. feeder pillars , unit substations, L.V feeders and KWH meter. [2.01] | 3,015 | 2,412 | AI-1870 | EW1 |
|  | 5 | **CONNECTION TO 5th RING ROAD (IF-0+000 to 1+258)** |  | 2026-09-22 | 2027-07-24 |  |  |  |  |  |  |  |  |  |  |  |  |
|  | RING | **EARTHWORKS & SITE GRADING** |  | 2026-09-22 | 2026-11-15 |  |  |  |  |  |  |  |  |  |  |  |  |
| MKH2-02-003-CN-1130 |  | Roadway Excavation for cuttings Connecting to 5th Ring road stage-1 | 21d | 2026-09-22 A | 2026-10-03 A | MKH2-02-003-CN-1090 | 100% |  | 2026-09-30 | 2026-10-24 |  |  | Excavator [420 h]; Loader [210 h]; Water Tanker [210 h]; Grader [210 h]; Truck [1260 h]; Road Roller [210 h]; Labor [840 h]; Driver [1470 h]; Eq. Operator [1050 h]; Roadway Excavation for cuttings (all types of soil) [26469.6] | 529,391.12 | 529,391.12 | AI-1140 | RD1 |
| MKH2-02-003-CN-1190 |  | Embankments -to Road connecting roat to 5th Ring road | 21d | 2026-09-23 A | 2026-11-08 | MKH2-02-003-CN-1140, MKH2-02-003-CN-2120 | 98% | 4d | 2026-11-18 | 2026-12-12 | 3d | 0d | Loader [210 h]; Bulldozer [210 h]; Water Tanker [210 h]; Grader [210 h]; Truck [420 h]; Road Roller [210 h]; Driver [630 h]; Eq. Operator [840 h]; Embankments to the ROW In road Works [24888] | 447,984.02 | 439,024.34 | AI-1200 | RD1 |
| MKH2-02-003-CN-1240 |  | Subgrade for Connecting Road to RING ROAD-5 | 21d | 2026-09-30 A | 2026-11-15 | MKH2-02-003-CN-1190 | 95% | 6d | 2026-12-03 | 2026-12-27 | 3d | 0d | Loader [210 h]; Water Tanker [210 h]; Grader [210 h]; Truck [210 h]; Road Roller [210 h]; Labor [1260 h]; Driver [420 h]; Eq. Operator [630 h]; Subgrade [4436.52] | 97,603.42 | 92,723.25 | AI-1250 | RD1 |
| MKH2-02-003-CN-1140 |  | Roadway Excavation for cuttings Connecting to 5th Ring road stage-2 | 21d | 2026-10-04 A | 2026-10-12 A | MKH2-02-003-CN-1130 | 100% |  | 2026-10-19 | 2026-11-11 |  |  | Excavator [420 h]; Loader [210 h]; Water Tanker [210 h]; Grader [210 h]; Truck [1260 h]; Road Roller [210 h]; Labor [840 h]; Driver [1470 h]; Eq. Operator [1050 h]; Roadway Excavation for cuttings (all types of soil) [26469.6] | 529,391.12 | 529,391.12 | AI-1150 | RD1 |

| ID | WBS | Activity | Duration | Start | Finish | Predecessors | Complete | Remaining | Planned start | Planned finish | Total float | Free float | Resources | Cost | Actual cost | Old Activity ID - MK | Construction |
| --- | --- | --- | --- | --- | --- | --- | --- | --- | --- | --- | --- | --- | --- | --- | --- | --- | --- |
|  | ROAD | **ASPHALT WORKS** |  | 2026-10-08 | 2027-05-30 |  |  |  |  |  |  |  |  |  |  |  |  |
| MKH2-02-003-CN-1290 |  | Aggregate base course at to Road connecting roat to 5th Ring road | 18d | 2026-10-08 A | 2026-11-21 | MKH2-02-003-CN-1240 | 80% | 5d | 2026-12-23 | 2027-01-12 | 3d | 0d | Loader [180 h]; Water Tanker [180 h]; Grader [180 h]; Truck [180 h]; Road Roller [180 h]; Labor [180 h]; Driver [360 h]; Eq. Operator [540 h]; Aggregate base course [2957.38] | 147,869 | 118,295.2 | AI-1300 | RD1 |
| MKH2-02-003-CN-1340 |  | Prime Coat (MC1) to Road connecting roat to 5th Ring road | 12d | 2026-10-18 A | 2026-12-05 | MKH2-02-003-CN-1290 | 80% | 12d | 2026-11-15 | 2026-11-28 | 3d | 0d | Water Tanker [120 h]; Grader [120 h]; Truck [120 h]; Road Roller [120 h]; Asphalte Paver [120 h]; Labor [120 h]; Driver [240 h]; Eq. Operator [360 h]; Bituminous base course (Grading I - Class A), including Prime Coat [148.07] | 82,919.2 | 66,335.36 | AI-1350 | RD1 |
| MKH2-02-003-CN-1390 |  | Bituminous base course to Road connecting roat to 5th Ring road | 16d | 2026-10-19 A | 2026-12-23 | MKH2-02-003-CN-1340 | 70% | 16d | 2026-11-29 | 2026-12-16 | 3d | 0d | Water Tanker [160 h]; Truck [800 h]; Road Roller [800 h]; Asphalte Paver [160 h]; Labor [1440 h]; Driver [960 h]; Eq. Operator [960 h]; Bituminous base course (Grading I - Class A), including Prime Coat [1331.29] | 745,522.4 | 521,865.68 | AI-1400 | RD1 |
| MKH2-02-003-CN-1440 |  | Tack coat at to Road connecting roat to 5th Ring road | 21d | 2027-04-08 | 2027-05-02 | MKH2-02-003-CN-1390, MKH2-02-003-CN-1410, MKH2-02-003-CN-1460, MKH2-02-003-CN-1550 |  |  |  |  | -24d | 0d | Water Tanker [210 h]; Grader [210 h]; Truck [210 h]; Road Roller [210 h]; Asphalte Paver [210 h]; Labor [210 h]; Driver [420 h]; Eq. Operator [630 h]; Bituminous concrete wearing course including Tack coat [73.7] | 42,746 |  | AI-1450 | RD1 |
| MKH2-02-003-CN-1490 |  | Bituminous concrete wearing course, to Road connecting roat to 5th Ring road | 21d | 2027-05-03 | 2027-05-30 | MKH2-02-003-CN-1440, MKH2-02-003-CN-1460, MKH2-02-003-CN-1630 |  |  |  |  | -24d | 0d | Water Tanker [210 h]; Truck [1050 h]; Road Roller [1050 h]; Asphalte Paver [210 h]; Labor [1890 h]; Driver [1260 h]; Eq. Operator [1260 h]; Bituminous concrete wearing course including Tack coat [665.98] | 386,268.4 |  | AI-1500 | RD1 |
|  | 5 FIN | **FINISHING WORKS** |  | 2027-05-31 | 2027-07-24 |  |  |  |  |  |  |  |  |  |  |  |  |
| MKH2-02-003-CN-1620 |  | Pavement markings [Road-5 -CONNECTION TO 5th RING ROAD (IF-0+000 to 1+258) ] | 16d | 2027-05-31 | 2027-06-17 | MKH2-02-003-CN-1490 |  |  |  |  | -24d | 0d | Labor [160 h]; Skilled Labor [160 h]; Retroreflective Thermoplastic White paiting and traffic lines [491.78]; Retroreflective Thermoplastic Yellow paiting and traffic lines [737] | 44,236.08 |  | AI-1630 | RD1 |
| MKH2-02-003-CN-1670 |  | Installation of Traffic Signs [Road-5 -CONNECTION TO 5th RING ROAD (IF-0+000 to 1+258) ] | 16d | 2027-06-19 | 2027-07-06 | MKH2-02-003-CN-1620 |  |  |  |  | -24d | 0d | Labor [800 h]; Skilled Labor [320 h]; Traffic signs, ground mounted, Sheet Alumenium, (breakaway)Single post, with all accessories [10.05] | 17,085 |  | AI-1680 | RD1 |
| MKH2-02-003-CN-1680 |  | Installation of Traffic Signs [Road-5 -CONNECTION TO 5th RING ROAD (IF-0+000 to 1+258) ] | 15d | 2027-07-07 | 2027-07-24 | MKH2-02-003-CN-1620, MKH2-02-003-CN-1670 |  |  |  |  | -24d | 0d | Excavator [150 h]; Crane [150 h]; Labor [150 h]; Skilled Labor [150 h]; Eq. Operator [300 h]; Set of traffic signals at intersection , the set include 4 signals [0.67] | 502,500 |  | AI-1690 | RD1 |
|  | 3 | **RAMP-2-IN (0+000 to 0+400)** |  | 2026-08-05 | 2027-05-13 |  |  |  |  |  |  |  |  |  |  |  |  |
|  | 3 | **ROADS** |  | 2026-08-05 | 2027-02-08 |  |  |  |  |  |  |  |  |  |  |  |  |
|  | 1 | **EARTHWORKS & SITE GRADING** |  | 2026-08-05 | 2026-11-16 |  |  |  |  |  |  |  |  |  |  |  |  |
| MKH2-02-003-CN-1110 |  | Roadway Excavation for cuttings RAMP-2-IN | 21d | 2026-08-05 A | 2026-10-14 A | MKH2-02-003-CN-1130 | 100% |  | 2026-09-06 | 2026-09-30 |  |  | Excavator [420 h]; Loader [210 h]; Water Tanker [210 h]; Grader [210 h]; Truck [1260 h]; Road Roller [210 h]; Labor [840 h]; Driver [1470 h]; Eq. Operator [1050 h]; Roadway Excavation for cuttings (all types of soil) [4353.3] | 87,066.1 | 87,066.1 | AI-1120 | RD1 |
| MKH2-02-003-CN-1170 |  | Embankments -RAMP-02-IN | 14d | 2026-08-08 A | 2026-11-16 | MKH2-02-003-CN-1110 | 95% | 11d | 2026-10-01 | 2026-10-17 | 20d | 0d | Loader [140 h]; Bulldozer [140 h]; Water Tanker [140 h]; Grader [140 h]; Truck [280 h]; Road Roller [140 h]; Driver [420 h]; Eq. Operator [560 h]; Embankments to the ROW In road Works [2046.6] | 36,838.72 | 34,996.78 | AI-1180 | RD1 |
| MKH2-02-003-CN-1220 |  | Subgrade for RAMP-2 IN | 21d | 2026-08-13 A | 2026-10-27 A | MKH2-02-003-CN-1170 | 100% |  | 2026-10-18 | 2026-11-10 |  |  | Loader [210 h]; Water Tanker [210 h]; Grader [210 h]; Truck [210 h]; Road Roller [210 h]; Labor [1260 h]; Driver [420 h]; Eq. Operator [630 h]; Subgrade [365.15] | 8,033.3 | 8,033.3 | AI-1230 | RD1 |
|  | 2 | **ASPHALT WORKS** |  | 2026-08-15 | 2027-02-01 |  |  |  |  |  |  |  |  |  |  |  |  |
| MKH2-02-003-CN-1270 |  | Aggregate base course at RAMP-IN | 20d | 2026-08-15 A | 2026-10-28 A | MKH2-02-003-CN-1220 | 100% |  | 2026-11-11 | 2026-12-03 |  |  | Loader [200 h]; Water Tanker [200 h]; Grader [200 h]; Truck [200 h]; Road Roller [200 h]; Labor [200 h]; Driver [400 h]; Eq. Operator [600 h]; Aggregate base course [243.21] | 12,160.5 | 12,160.5 | AI-1280 | RD1 |
| MKH2-02-003-CN-1320 |  | Prime Coat (MC1) RAMP-02- IN | 14d | 2026-08-31 A | 2026-10-29 A | MKH2-02-003-CN-1270 | 100% |  | 2026-12-14 | 2026-12-29 |  |  | Water Tanker [140 h]; Grader [140 h]; Truck [140 h]; Road Roller [140 h]; Asphalte Paver [140 h]; Labor [140 h]; Driver [280 h]; Eq. Operator [420 h]; Bituminous base course (Grading I - Class A), including Prime Coat [12.06] | 6,753.6 | 6,753.6 | AI-1330 | RD1 |
| MKH2-02-003-CN-1370 |  | Bituminous base course for RAMP-02 IN | 15d | 2026-09-27 A | 2026-12-03 | MKH2-02-003-CN-1320 | 30% | 15d | 2027-01-06 | 2027-01-23 | 20d | 0d | Water Tanker [150 h]; Truck [750 h]; Road Roller [750 h]; Asphalte Paver [150 h]; Labor [1350 h]; Driver [900 h]; Eq. Operator [900 h]; Bituminous base course (Grading I - Class A), including Prime Coat [109.88] | 61,532.8 | 18,459.84 | AI-1380 | RD1 |
| MKH2-02-003-CN-1420 |  | Tack coat at RAMP-2-IN | 14d | 2026-12-24 | 2027-01-09 | MKH2-02-003-CN-1370, MKH2-02-003-CN-1390 |  |  |  |  | 3d | 0d | Water Tanker [140 h]; Grader [140 h]; Truck [140 h]; Road Roller [140 h]; Asphalte Paver [140 h]; Labor [140 h]; Driver [280 h]; Eq. Operator [420 h]; Bituminous concrete wearing course including Tack coat [6.03] | 3,497.4 |  | AI-1430 | RD1 |
| MKH2-02-003-CN-1470 |  | Bituminous concrete wearing course, RAMP-2-IN | 20d | 2027-01-10 | 2027-02-01 | MKH2-02-003-CN-1420 |  |  |  |  | 3d | 0d | Water Tanker [200 h]; Truck [1000 h]; Road Roller [1000 h]; Asphalte Paver [200 h]; Labor [1800 h]; Driver [1200 h]; Eq. Operator [1200 h]; Bituminous concrete wearing course including Tack coat [54.94] | 31,865.2 |  | AI-1480 | RD1 |
|  | FIN | **FINISHING WORKS** |  | 2026-12-05 | 2027-02-08 |  |  |  |  |  |  |  |  |  |  |  |  |
| MKH2-02-003-CN-1520 |  | Installation of Precast Concrete curb at RAMP-2-IN | 14d | 2026-12-05 | 2026-12-20 | MKH2-02-003-CN-1370 |  |  |  |  | 56d | 0d | Labor [280 h]; Skilled Labor [280 h]; Driver; Eq. Operator; Precast Concrete Kerb, Type K1-A [1118.9]; Precast Concrete Kerb, Type K4 [435.5]; Precast Concrete Kerb, Type K1-B [100.5] | 98,791.5 |  | AI-1530 | RD1 |
| MKH2-02-003-CN-1560 |  | 60mm thick - Interlocking block pavers for sidewalk/footpath RAMP-2-IN | 14d | 2026-12-21 | 2027-01-05 | MKH2-02-003-CN-1520 |  |  |  |  | 56d | 0d | Labor [1120 h]; Mason [560 h]; 60mm thick - Interlocking block pavers for sidewalk/footpath [2116.53] | 148,157.1 |  | AI-1570 | RD1 |
| MKH2-02-003-CN-1600 |  | Pavement markings [Road-3 -RAMP-2-IN (0+000 to 0+400) ] | 14d | 2027-01-06 | 2027-01-21 | MKH2-02-003-CN-1560 |  |  |  |  | 56d | 0d | Labor [140 h]; Skilled Labor [140 h]; Retroreflective Thermoplastic White paiting and traffic lines [40.2]; Retroreflective Thermoplastic Yellow paiting and traffic lines [60.97] | 3,642.12 |  | AI-1610 | RD1 |
| MKH2-02-003-CN-1650 |  | Installation of Traffic Signs [Road-3 -RAMP-2-IN (0+000 to 0+400) ] | 15d | 2027-01-23 | 2027-02-08 | MKH2-02-003-CN-1600 |  |  |  |  | 56d | 0d | Labor [750 h]; Skilled Labor [300 h]; Traffic signs, ground mounted, Sheet Alumenium, (breakaway)Single post, with all accessories [6.03] | 10,251 |  | AI-1660 | RD1 |

| ID | WBS | Activity | Duration | Start | Finish | Predecessors | Complete | Planned start | Planned finish | Total float | Free float | Resources | Cost | Actual cost | Old Activity ID - MK | Construction |
| --- | --- | --- | --- | --- | --- | --- | --- | --- | --- | --- | --- | --- | --- | --- | --- | --- |
|  | 4 | **ELECTRICAL WORKS (MKH2-01-007-DAR-TS8-0-SL-DWG-1010-00)** |  | 2027-02-02 | 2027-05-13 |  |  |  |  |  |  |  |  |  |  |  |
|  | 1 | **LV CABLES** |  | 2027-02-02 | 2027-02-27 |  |  |  |  |  |  |  |  |  |  |  |
| MKH2-02-003-CN-1750 |  | Installation of Low Voltage Cables -RAMP-2 in | 21d | 2027-02-02 | 2027-02-27 | MKH2-02-003-CN-1220, MKH2-02-003-CN-1370, MKH2-02-003-CN-1470 |  |  |  | 3d | 0d | Excavator [210 h]; Truck [210 h]; Bobcat [210 h]; Compactor [210 h]; Labor [420 h]; Driver [210 h]; Eq. Operator [630 h]; Electrician [420 h]; Cable, Copper 4Cx16mm2 +1Cx10mm2 CU/XLPE/SWA/PVC [717.34]; Cable, Copper 4Cx50mm2 +1Cx25mm2 CU/XLPE/SWA/PVC [88.44]; Cable, Copper 4Cx95mm2 +1Cx50mm2 CU/XLPE/SWA/PVC [53.6] | 80,162.92 |  | AI-1760 | EW1 |
|  | 3 | **STREET LIGHTING NETWORK INCLUDING ALL** |  | 2027-02-28 | 2027-04-19 |  |  |  |  |  |  |  |  |  |  |  |
| MKH2-02-003-CN-1790 |  | Installation of Lighting Poles 1-Arms In RAMP-2 IN | 21d | 2027-02-28 | 2027-03-27 | MKH2-02-003-CN-1750 |  |  |  | 3d | 0d | Excavator [210 h]; Truck [210 h]; Crane [210 h]; Labor [630 h]; Driver [210 h]; Eq. Operator [420 h]; Carpenter [210 h]; Steel Fixer [210 h]; Mason [210 h]; Electrician [630 h]; Lighting poles with 1 arm, height of ( 10 ) meters [19.43] | 124,352 |  | AI-1800 | EW1 |
| MKH2-02-003-CN-1830 |  | Installation of Lighting Luminaires for 1-Arms RAMP-02 IN | 20d | 2027-03-28 | 2027-04-19 | MKH2-02-003-CN-1790 |  |  |  | 3d | 0d | Crane [200 h]; Labor [600 h]; Skilled Labor [400 h]; Driver; Eq. Operator [200 h]; Electrician [600 h]; Street Lighting( LED) Luminaire of Output = 16784 lumen complete with control gear and lamp, (107) WATT. [19.43] | 38,860 |  | AI-1840 | EW1 |
|  | 4 | **EARTHING** |  | 2027-04-20 | 2027-05-13 |  |  |  |  |  |  |  |  |  |  |  |
| MKH2-02-003-CN-1870 |  | Installation of Earthing System for RAMP-02 IN | 21d | 2027-04-20 | 2027-05-13 | MKH2-02-003-CN-1830, MKH2-02-003-CN-1630 |  |  |  | 3d | 5d | Labor [420 h]; Driver; Eq. Operator; Electrician [210 h]; Including earthing of lighting poles ,masts. feeder pillars , unit substations, L.V feeders and KWH meter. [0.67] | 1,005 |  | AI-1880 | EW1 |
|  | 4 | **RAMP-2-OUT (0+398 to 0+000)** |  | 2026-08-05 | 2027-03-28 |  |  |  |  |  |  |  |  |  |  |  |
|  | 3 | **ROADS** |  | 2026-08-05 | 2027-03-28 |  |  |  |  |  |  |  |  |  |  |  |
|  | 1 | **EARTHWORKS & SITE GRADING** |  | 2026-08-05 | 2026-08-27 |  |  |  |  |  |  |  |  |  |  |  |
| MKH2-02-003-CN-1120 |  | Roadway Excavation for cuttings RAMP-2-out | 14d | 2026-08-05 A | 2026-08-17 A | MKH2-02-003-CN-1110 | 100% | 2026-10-01 | 2026-10-17 |  |  | Excavator [280 h]; Loader [140 h]; Water Tanker [140 h]; Grader [140 h]; Truck [840 h]; Road Roller [140 h]; Labor [560 h]; Driver [980 h]; Eq. Operator [700 h]; Roadway Excavation for cuttings (all types of soil) [4353.3] | 87,066.1 | 87,066.1 | AI-1130 | RD1 |
| MKH2-02-003-CN-1180 |  | Embankments -RAMP-02-out | 14d | 2026-08-06 A | 2026-08-22 A | MKH2-02-003-CN-1120 | 100% | 2026-10-18 | 2026-11-02 |  |  | Loader [140 h]; Bulldozer [140 h]; Water Tanker [140 h]; Grader [140 h]; Truck [280 h]; Road Roller [140 h]; Driver [420 h]; Eq. Operator [560 h]; Embankments to the ROW In road Works [2046.6] | 36,838.72 | 36,838.72 | AI-1190 | RD1 |
| MKH2-02-003-CN-1230 |  | Subgrade for RAMP-2 OUT | 15d | 2026-08-08 A | 2026-08-27 A | MKH2-02-003-CN-1180 | 100% | 2026-11-03 | 2026-11-19 |  |  | Loader [150 h]; Water Tanker [150 h]; Grader [150 h]; Truck [150 h]; Road Roller [150 h]; Labor [900 h]; Driver [300 h]; Eq. Operator [450 h]; Subgrade [365.15] | 8,033.3 | 8,033.3 | AI-1240 | RD1 |
|  | 2 | **ASPHALT WORKS** |  | 2026-08-09 | 2027-02-17 |  |  |  |  |  |  |  |  |  |  |  |
| MKH2-02-003-CN-1280 |  | Aggregate base course at RAMP-OUT | 16d | 2026-08-09 A | 2026-08-30 A | MKH2-02-003-CN-1230 | 100% | 2026-11-21 | 2026-12-08 |  |  | Loader [160 h]; Water Tanker [160 h]; Grader [160 h]; Truck [160 h]; Road Roller [160 h]; Labor [160 h]; Driver [320 h]; Eq. Operator [480 h]; Aggregate base course [243.21] | 12,160.5 | 12,160.5 | AI-1290 | RD1 |
| MKH2-02-003-CN-1330 |  | Prime Coat (MC1) RAMP-02- OUT | 14d | 2026-08-12 A | 2026-08-31 A | MKH2-02-003-CN-1280 | 100% | 2026-11-10 | 2026-11-25 |  |  | Water Tanker [140 h]; Grader [140 h]; Truck [140 h]; Road Roller [140 h]; Asphalte Paver [140 h]; Labor [140 h]; Driver [280 h]; Eq. Operator [420 h]; Bituminous base course (Grading I - Class A), including Prime Coat [12.06] | 6,753.6 | 6,753.6 | AI-1340 | RD1 |
| MKH2-02-003-CN-1380 |  | Bituminous base course for RAMP-02 OUT | 15d | 2026-08-13 A | 2026-10-20 A | MKH2-02-003-CN-1330 | 100% | 2026-11-26 | 2026-12-13 |  |  | Water Tanker [150 h]; Truck [750 h]; Road Roller [750 h]; Asphalte Paver [150 h]; Labor [1350 h]; Driver [900 h]; Eq. Operator [900 h]; Bituminous base course (Grading I - Class A), including Prime Coat [109.88] | 61,532.8 | 61,532.8 | AI-1390 | RD1 |
| MKH2-02-003-CN-1430 |  | Tack coat at RAMP-2-OUT | 14d | 2027-01-10 | 2027-01-25 | MKH2-02-003-CN-1380, MKH2-02-003-CN-1420 |  |  |  | 23d | 0d | Water Tanker [140 h]; Grader [140 h]; Truck [140 h]; Road Roller [140 h]; Asphalte Paver [140 h]; Labor [140 h]; Driver [280 h]; Eq. Operator [420 h]; Bituminous concrete wearing course including Tack coat [6.03] | 3,497.4 |  | AI-1440 | RD1 |
| MKH2-02-003-CN-1480 |  | Bituminous concrete wearing course, RAMP-2-OUT | 20d | 2027-01-26 | 2027-02-17 | MKH2-02-003-CN-1430 |  |  |  | 29d | 6d | Water Tanker [200 h]; Truck [1000 h]; Road Roller [1000 h]; Asphalte Paver [200 h]; Labor [1800 h]; Driver [1200 h]; Eq. Operator [1200 h]; Bituminous concrete wearing course including Tack coat [54.94] | 31,865.2 |  | AI-1490 | RD1 |
|  | FIN | **FINISHING WORKS** |  | 2027-01-26 | 2027-03-28 |  |  |  |  |  |  |  |  |  |  |  |
| MKH2-02-003-CN-1530 |  | Installation of Precast Concrete curb at RAMP-2-OUT | 12d | 2027-01-26 | 2027-02-08 | MKH2-02-003-CN-1380, MKH2-02-003-CN-1430 |  |  |  | 23d | 0d | Labor [240 h]; Skilled Labor [240 h]; Driver; Eq. Operator; Precast Concrete Kerb, Type K1-A [1118.9]; Precast Concrete Kerb, Type K4 [435.5]; Precast Concrete Kerb, Type K1-B [100.5] | 98,791.5 |  | AI-1540 | RD1 |
| MKH2-02-003-CN-1570 |  | 60mm thick - Interlocking block pavers for sidewalk/footpath RAMP-2-OUT | 14d | 2027-02-09 | 2027-02-25 | MKH2-02-003-CN-1530 |  |  |  | 23d | 0d | Labor [1120 h]; Mason [560 h]; 60mm thick - Interlocking block pavers for sidewalk/footpath [2116.53] | 148,157.1 |  | AI-1580 | RD1 |
| MKH2-02-003-CN-1610 |  | Pavement markings [Road-4 -RAMP-2-OUT (0+398 to 0+000) ] | 11d | 2027-02-27 | 2027-03-14 | MKH2-02-003-CN-1570, MKH2-02-003-CN-1480 |  |  |  | 23d | 0d | Labor [140 h]; Skilled Labor [140 h]; Retroreflective Thermoplastic White paiting and traffic lines [40.2]; Retroreflective Thermoplastic Yellow paiting and traffic lines [60.97] | 3,642.12 |  | AI-1620 | RD1 |
| MKH2-02-003-CN-1660 |  | Installation of Traffic Signs [Road-4 -RAMP-2-OUT (0+398 to 0+000) ] | 12d | 2027-03-15 | 2027-03-28 | MKH2-02-003-CN-1610 |  |  |  | 23d | 0d | Labor [750 h]; Skilled Labor [300 h]; Traffic signs, ground mounted, Sheet Alumenium, (breakaway)Single post, with all accessories [6.03] | 10,251 |  | AI-1670 | RD1 |

| ID | WBS | Activity | Duration | Start | Finish | Predecessors | Complete | Remaining | Planned start | Planned finish | Total float | Free float | Resources | Cost | Actual cost | Old Activity ID - MK | Construction |
| --- | --- | --- | --- | --- | --- | --- | --- | --- | --- | --- | --- | --- | --- | --- | --- | --- | --- |
|  | 4 | **ELECTRICAL WORKS (MKH2-01-007-DAR-TS8-0-SL-DWG-1010-00)** |  | 2026-09-10 | 2027-03-09 |  |  |  |  |  |  |  |  |  |  |  |  |
|  | 1 | **LV CABLES** |  | 2026-09-10 | 2026-11-28 |  |  |  |  |  |  |  |  |  |  |  |  |
| MKH2-02-003-CN-1760 |  | Installation of Low Voltage Cables -RAMP-2 out | 21d | 2026-09-10 A | 2026-11-28 | MKH2-02-003-CN-1230, MKH2-02-003-CN-1380 | 30% | 21d | 2026-11-11 | 2026-12-05 | 99d | 0d | Excavator [210 h]; Truck [210 h]; Bobcat [210 h]; Compactor [210 h]; Labor [420 h]; Driver [210 h]; Eq. Operator [630 h]; Electrician [420 h]; Cable, Copper 4Cx16mm2 +1Cx10mm2 CU/XLPE/SWA/PVC [716.53]; Cable, Copper 4Cx50mm2 +1Cx25mm2 CU/XLPE/SWA/PVC [88.44]; Cable, Copper 4Cx95mm2 +1Cx50mm2 CU/XLPE/SWA/PVC [53.6] | 80,105.95 | 24,032.3 | AI-1770 | EW1 |
|  | 3 | **STREET LIGHTING NETWORK INCLUDING ALL** |  | 2026-09-10 | 2027-02-23 |  |  |  |  |  |  |  |  |  |  |  |  |
| MKH2-02-003-CN-1800 |  | Installation of Lighting Poles 1-Arms In RAMP-2 OUT | 19d | 2026-09-10 A | 2026-12-20 | MKH2-02-003-CN-1760 | 30% | 19d | 2026-12-06 | 2026-12-27 | 99d | 43d | Excavator [190 h]; Truck [190 h]; Crane [190 h]; Labor [570 h]; Driver [190 h]; Eq. Operator [380 h]; Carpenter [190 h]; Steel Fixer [190 h]; Mason [190 h]; Electrician [570 h]; Lighting poles with 1 arm, height of ( 10 ) meters [19.43] | 124,352 | 37,305.6 | AI-1810 | EW1 |
| MKH2-02-003-CN-1840 |  | Installation of Lighting Luminaires for 1-Arms RAMP-02 OUT | 12d | 2026-09-12 A | 2027-02-23 | MKH2-02-003-CN-1800, MKH2-02-003-CN-1650 | 30% | 12d | 2027-04-05 | 2027-04-18 | 56d | 0d | Crane [120 h]; Labor [360 h]; Skilled Labor [240 h]; Driver; Eq. Operator [120 h]; Electrician [360 h]; Street Lighting( LED) Luminaire of Output = 16784 lumen complete with control gear and lamp, (107) WATT. [19.43] | 38,860 | 11,658 | AI-1850 | EW1 |
|  | 4 | **EARTHING** |  | 2027-02-24 | 2027-03-09 |  |  |  |  |  |  |  |  |  |  |  |  |
| MKH2-02-003-CN-1880 |  | Installation of Earthing System for RAMP-02 OUT | 12d | 2027-02-24 | 2027-03-09 | MKH2-02-003-CN-1760, MKH2-02-003-CN-1840 |  |  |  |  | 56d | 0d | Labor [240 h]; Driver; Eq. Operator; Electrician [120 h]; Including earthing of lighting poles ,masts. feeder pillars , unit substations, L.V feeders and KWH meter. [0.67] | 1,005 |  | AI-1890 | EW1 |
|  | DEM | **DEMOLISHING WORKS** |  | 2026-04-08 | 2026-11-19 |  |  |  |  |  |  |  |  |  |  |  |  |
|  | DEMO | **DEMOLISHING Works** |  | 2026-04-08 | 2026-11-19 |  |  |  |  |  |  |  |  |  |  |  |  |
| MKH2-02-003-CN-1020 |  | Removal of the existing asphalt layers (up to base course layer) | 8d | 2026-04-08 A | 2026-05-16 A | MKH2-02-003-CN-1010, MKH2-02-003-EN-1500 | 100% |  | 2026-07-04 | 2026-07-12 |  |  | Loader [160 h]; Truck [320 h]; Milling machine [160 h]; Bobcat [80 h]; Labor [480 h]; Driver [320 h]; Eq. Operator [400 h]; Removal of the existing asphalt layers (up to base course layer) [1005] | 35,175 | 35,175 | AI-1020 | RD1 |
| MKH2-02-003-CN-1000 |  | Removal of existing curbstone | 7d | 2026-04-11 A | 2026-05-06 A | MKH2-02-003-MB-1100, MKH2-02-003-MB-1090, MKH2-02-003-MB-1040, MKH2-02-003-CN-1070, MKH2-02-003-EN-5030 | 100% |  | 2026-06-09 | 2026-06-16 |  |  | Excavator [140 h]; Loader [210 h]; Bulldozer [70 h]; Truck [350 h]; Labor [420 h]; Driver [350 h]; Eq. Operator [420 h]; Removal of existing curbstone [167.5] | 5,025 | 5,025 | AI-1000 | RD1 |
| MKH2-02-003-CN-1030 |  | Removal of the existing signages | 8d | 2026-04-11 A | 2026-05-06 A | MKH2-02-003-CN-1020 | 100% |  | 2026-07-13 | 2026-07-21 |  |  | Excavator [80 h]; Loader [80 h]; Truck [240 h]; Labor [400 h]; Driver [240 h]; Eq. Operator [160 h]; Removal of the existing signages [1.34] | 6,700 | 6,700 | AI-1030 | RD1 |
| MKH2-02-003-CN-1040 |  | Removal of the existing Street Lighting Poles | 12d | 2026-04-11 A | 2026-05-06 A | MKH2-02-003-CN-1030 | 100% |  | 2026-07-22 | 2026-08-04 |  |  | Excavator [120 h]; Loader [120 h]; Truck [360 h]; Labor [600 h]; Driver [360 h]; Eq. Operator [240 h]; Removal of the existing Street Lighting Poles [43.55] | 108,875 | 108,875 | AI-1040 | RD1 |
| MKH2-02-003-CN-1010 |  | Milling of the existing asphalt layer | 14d | 2026-11-04 | 2026-11-19 | MKH2-02-003-CN-1000 |  |  |  |  | 118d | 0d | Loader [280 h]; Truck [560 h]; Milling machine [280 h]; Bobcat [140 h]; Labor [840 h]; Driver [560 h]; Eq. Operator [700 h]; Milling of the existing asphalt layer [3350] | 33,500 |  | AI-1010 | RD1 |
|  | OPEN | **Open Drain Channels** |  | 2026-03-14 | 2027-06-16 |  |  |  |  |  |  |  |  |  |  |  |  |
|  | Section 1 | **Near RAMP-Out Location, from Ch1+640 to Ch 1+899** |  | 2026-03-14 | 2026-06-28 |  |  |  |  |  |  |  |  |  |  |  |  |
| MKH2-02-003-CN-2100 |  | Excavation for Channel | 21d | 2026-03-14 A | 2026-04-02 A | MKH2-02-003-CN-2040, MKH2-02-003-EN-1460, MKH2-02-003-EN-1470, MKH2-02-003-EN-1480, MKH2-02-003-EN-1490, MKH2-02-003-EN-1500 | 100% |  | 2026-05-21 | 2026-06-17 |  |  | Excavator [210 h]; Truck [1180 h]; Compactor [210 h]; Labor [10500 h]; Driver [210 h]; Eq. Operator [420 h]; Channel excavation in all type of soil [17037.2] | 425,928.72 | 425,928.72 | AI-2110 | OP1 |
| MKH2-02-003-CN-2180 |  | Embankment for Channel Berms | 21d | 2026-04-20 A | 2026-06-03 A | MKH2-02-003-CN-2100, MKH2-02-003-PR-1030 | 100% |  | 2026-06-16 | 2026-07-09 |  |  | Loader [210 h]; Bulldozer [210 h]; Water Tanker [210 h]; Grader [210 h]; Truck [420 h]; Road Roller [210 h]; Compactor [630 h]; Labor [6300 h]; Driver [630 h]; Eq. Operator [1470 h]; Embankments to the Channel Berms ,with suitable and approved [2680] | 53,600 | 53,600 | AI-2180 | OP1 |
| MKH2-02-003-CN-2250 |  | Riprap Grouting | 21d | 2026-06-11 A | 2026-06-28 A | MKH2-02-003-CN-2180, MKH2-02-003-PR-1330, MKH2-02-003-EN-5080 | 100% |  | 2026-07-08 | 2026-08-01 |  |  | Bobcat [210 h]; Labor [5250 h]; Skilled Labor [630 h]; Driver; Eq. Operator [210 h]; Mason [840 h]; Finished grouted riprap as per drawings [11007.1] | 990,643.37 | 990,643.37 | AI-2250 | OP1 |
|  | Section 2 | **Near Ramp- In location from Ch 1+270 to Ch 1+530** |  | 2026-04-02 | 2026-07-09 |  |  |  |  |  |  |  |  |  |  |  |  |
| MKH2-02-003-CN-2110 |  | Excavation for Channel | 21d | 2026-04-02 A | 2026-05-14 A | MKH2-02-003-CN-2180 | 100% |  | 2026-07-27 | 2026-08-19 |  |  | Excavator [210 h]; Truck [210 h]; Compactor [210 h]; Labor [10500 h]; Driver [210 h]; Eq. Operator [420 h]; Channel excavation in all type of soil [17037.1] | 425,928.55 | 425,928.55 | AI-2120 | OP1 |
| MKH2-02-003-CN-2190 |  | Embankment for Channel Berms | 21d | 2026-06-04 A | 2026-06-28 A | MKH2-02-003-CN-2110, MKH2-02-003-CN-2250, MKH2-02-003-MS-1030, MKH2-02-003-CN-1040 | 100% |  | 2026-10-27 | 2026-11-19 |  |  | Loader [210 h]; Bulldozer [210 h]; Water Tanker [210 h]; Grader [210 h]; Truck [420 h]; Road Roller [210 h]; Compactor [630 h]; Labor [6300 h]; Driver [630 h]; Eq. Operator [1470 h]; Embankments to the Channel Berms ,with suitable and approved [2680] | 53,600 | 53,600 | AI-2190 | OP1 |
| MKH2-02-003-CN-2260 |  | Riprap Grouting | 21d | 2026-06-29 A | 2026-07-09 A | MKH2-02-003-CN-2190 FS+45d, MKH2-02-003-CN-2250 | 100% |  | 2026-12-31 | 2027-01-24 |  |  | Bobcat [210 h]; Labor [5250 h]; Skilled Labor [630 h]; Driver; Eq. Operator [210 h]; Mason [840 h]; Finished grouted riprap as per drawings [11007.1] | 990,642.77 | 990,642.77 | AI-2260 | OP1 |

| ID | WBS | Activity | Duration | Start | Finish | Predecessors | Complete | Remaining | Planned start | Planned finish | Total float | Free float | Resources | Cost | Actual cost | Old Activity ID - MK | Construction |
| --- | --- | --- | --- | --- | --- | --- | --- | --- | --- | --- | --- | --- | --- | --- | --- | --- | --- |
|  | Section 3 | **Near Ramp- In location from Ch 1+010 to Ch 1+270** |  | 2026-05-16 | 2026-07-23 |  |  |  |  |  |  |  |  |  |  |  |  |
| MKH2-02-003-CN-2130 |  | Excavation for Channel | 21d | 2026-05-16 A | 2026-06-17 A | MKH2-02-003-CN-2110, MKH2-02-003-CN-2190, MKH2-02-003-CN-2190 FF | 100% |  | 2026-11-17 | 2026-12-10 |  |  | Excavator [210 h]; Truck [210 h]; Compactor [210 h]; Labor [10500 h]; Driver [210 h]; Eq. Operator [420 h]; Channel excavation in all type of soil [17037.1] | 425,928.55 | 425,928.55 | AI-2130 | OP1 |
| MKH2-02-003-CN-2200 |  | Embankment for Channel Berms | 21d | 2026-06-28 A | 2026-07-04 A | MKH2-02-003-CN-2130 | 100% |  | 2026-11-09 | 2026-12-02 |  |  | Loader [210 h]; Bulldozer [210 h]; Water Tanker [210 h]; Grader [210 h]; Truck [420 h]; Road Roller [210 h]; Compactor [630 h]; Labor [6300 h]; Driver [630 h]; Eq. Operator [1470 h]; Embankments to the Channel Berms ,with suitable and approved [2680] | 53,600 | 53,600 | AI-2200 | OP1 |
| MKH2-02-003-CN-2270 |  | Riprap Grouting | 21d | 2026-07-11 A | 2026-07-23 A | MKH2-02-003-CN-2200 | 100% |  | 2026-10-21 | 2026-11-14 |  |  | Bobcat [210 h]; Labor [5250 h]; Skilled Labor [630 h]; Driver; Eq. Operator [210 h]; Mason [840 h]; Finished grouted riprap as per drawings [11007.1] | 990,642.77 | 990,642.77 | AI-2270 | OP1 |
|  | Section 4 | **Near Ramp- In location from Ch 0+750 to Ch 1+010** |  | 2026-06-17 | 2026-07-30 |  |  |  |  |  |  |  |  |  |  |  |  |
| MKH2-02-003-CN-2140 |  | Excavation for Channel | 21d | 2026-06-17 A | 2026-07-21 A | MKH2-02-003-CN-2130, MKH2-02-003-CN-2200 | 100% |  | 2026-12-13 | 2027-01-05 |  |  | Excavator [210 h]; Truck [210 h]; Compactor [210 h]; Labor [10500 h]; Driver [210 h]; Eq. Operator [420 h]; Channel excavation in all type of soil [17037.1] | 425,928.55 | 425,928.55 | AI-2140 | OP1 |
| MKH2-02-003-CN-2210 |  | Embankment for Channel Berms | 21d | 2026-07-05 A | 2026-07-29 A | MKH2-02-003-CN-2140, MKH2-02-003-CN-2270 | 100% |  | 2026-11-15 | 2026-12-08 |  |  | Loader [210 h]; Bulldozer [210 h]; Water Tanker [210 h]; Grader [210 h]; Truck [420 h]; Road Roller [210 h]; Compactor [630 h]; Labor [6300 h]; Driver [630 h]; Eq. Operator [1470 h]; Embankments to the Channel Berms ,with suitable and approved [2680] | 53,600 | 53,600 | AI-2210 | OP1 |
| MKH2-02-003-CN-2280 |  | Riprap Grouting | 21d | 2026-07-25 A | 2026-07-30 A | MKH2-02-003-CN-2210, MKH2-02-003-CN-2270 | 100% |  | 2026-11-23 | 2026-12-16 |  |  | Bobcat [210 h]; Labor [5250 h]; Skilled Labor [630 h]; Driver; Eq. Operator [210 h]; Mason [840 h]; Finished grouted riprap as per drawings [11007.1] | 990,642.77 | 990,642.77 | AI-2280 | OP1 |
|  | Section 5 | **Near Ramp- In location from Ch 0+490 to Ch 0+750** |  | 2026-07-21 | 2026-08-10 |  |  |  |  |  |  |  |  |  |  |  |  |
| MKH2-02-003-CN-2150 |  | Excavation for Channel | 21d | 2026-07-21 A | 2026-07-22 A | MKH2-02-003-CN-2140, MKH2-02-003-CN-2210, MKH2-02-003-CN-2260 | 100% |  | 2026-11-23 | 2026-12-16 |  |  | Excavator [210 h]; Truck [210 h]; Compactor [210 h]; Labor [10500 h]; Driver [210 h]; Eq. Operator [420 h]; Channel excavation in all type of soil [17037.1] | 425,928.55 | 425,928.55 | AI-2150 | OP1 |
| MKH2-02-003-CN-2220 |  | Embankment for Channel Berms | 21d | 2026-07-30 A | 2026-08-06 A | MKH2-02-003-CN-2150, MKH2-02-003-CN-2280, MKH2-02-003-CN-1850 | 100% |  | 2027-01-21 | 2027-02-14 |  |  | Loader [210 h]; Bulldozer [210 h]; Water Tanker [210 h]; Grader [210 h]; Truck [420 h]; Road Roller [210 h]; Compactor [630 h]; Labor [6300 h]; Driver [630 h]; Eq. Operator [1470 h]; Embankments to the Channel Berms ,with suitable and approved [2680] | 53,600 | 53,600 | AI-2220 | OP1 |
| MKH2-02-003-CN-2290 |  | Riprap Grouting | 21d | 2026-08-01 A | 2026-08-10 A | MKH2-02-003-CN-2220, MKH2-02-003-CN-2280 | 100% |  | 2027-02-15 | 2027-03-15 |  |  | Bobcat [210 h]; Labor [5250 h]; Skilled Labor [630 h]; Driver; Eq. Operator [210 h]; Mason [840 h]; Finished grouted riprap as per drawings [11007.1] | 990,642.77 | 990,642.77 | AI-2290 | OP1 |
|  | Section 6 | **Near Ramp- In location from Ch 0+230 to Ch 0+490** |  | 2026-07-22 | 2026-09-03 |  |  |  |  |  |  |  |  |  |  |  |  |
| MKH2-02-003-CN-2160 |  | Excavation for Channel | 21d | 2026-07-22 A | 2026-07-23 A | MKH2-02-003-CN-2150, MKH2-02-003-CN-2220 | 100% |  | 2027-02-08 | 2027-03-04 |  |  | Excavator [210 h]; Truck [210 h]; Compactor [210 h]; Labor [10500 h]; Driver [210 h]; Eq. Operator [420 h]; Channel excavation in all type of soil [17037.1] | 425,928.55 | 425,928.55 | AI-2160 | OP1 |
| MKH2-02-003-CN-2230 |  | Embankment for Channel Berms | 21d | 2026-08-12 A | 2026-08-13 A | MKH2-02-003-CN-2160, MKH2-02-003-CN-2290, MKH2-02-003-CN-1880 | 100% |  | 2027-04-17 | 2027-05-10 |  |  | Loader [210 h]; Bulldozer [210 h]; Water Tanker [210 h]; Grader [210 h]; Truck [420 h]; Road Roller [210 h]; Compactor [630 h]; Labor [6300 h]; Driver [630 h]; Eq. Operator [1470 h]; Embankments to the Channel Berms ,with suitable and approved [2680] | 53,600 | 53,600 | AI-2230 | OP1 |
| MKH2-02-003-CN-2300 |  | Riprap Grouting | 21d | 2026-08-12 A | 2026-09-03 A | MKH2-02-003-CN-2230, MKH2-02-003-CN-2290, MKH2-02-003-CO-1090 | 100% |  | 2027-05-20 | 2027-06-13 |  |  | Bobcat [210 h]; Labor [5250 h]; Skilled Labor [630 h]; Driver; Eq. Operator [210 h]; Mason [840 h]; Finished grouted riprap as per drawings [11007.1] | 990,642.77 | 990,642.77 | AI-2300 | OP1 |
|  | Section 7 | **Near Ramp- In location from Ch 0+000 to Ch 0+230** |  | 2026-07-23 | 2027-06-16 |  |  |  |  |  |  |  |  |  |  |  |  |
| MKH2-02-003-CN-2170 |  | Excavation for Channel | 21d | 2026-07-23 A | 2027-01-26 | MKH2-02-003-CN-2160 FS+5d | 98% | 10d | 2027-03-15 | 2027-04-07 | 70d | 0d | Excavator [210 h]; Truck [210 h]; Compactor [210 h]; Labor [10500 h]; Driver [210 h]; Eq. Operator [420 h]; Channel excavation in all type of soil [17037.1] | 425,928.55 | 417,409.98 | AI-2170 | OP1 |
| MKH2-02-003-CN-2240 |  | Embankment for Channel Berms | 21d | 2026-09-09 A | 2027-02-20 | MKH2-02-003-CN-2170 | 98% | 21d | 2027-01-02 | 2027-01-25 | 70d | 72d | Loader [210 h]; Bulldozer [210 h]; Water Tanker [210 h]; Grader [210 h]; Truck [420 h]; Road Roller [210 h]; Compactor [630 h]; Labor [6300 h]; Driver [630 h]; Eq. Operator [1470 h]; Embankments to the Channel Berms ,with suitable and approved [2680] | 53,600 | 52,528 | AI-2240 | OP1 |
| MKH2-02-003-CN-2310 |  | Riprap Grouting | 21d | 2026-09-09 A | 2027-06-16 | MKH2-02-003-CN-2240, MKH2-02-003-CN-2300, MKH2-02-003-CN-1870, MKH2-02-003-CN-1860 | 15% | 21d | 2027-07-11 | 2027-08-03 | -2d | 0d | Bobcat [210 h]; Labor [5250 h]; Skilled Labor [630 h]; Driver; Eq. Operator [210 h]; Mason [840 h]; Finished grouted riprap as per drawings [11007.1] | 990,642.77 | 148,596.42 | AI-2310 | OP1 |
|  | T & C | **TESTING & COMMISSIONING** |  | 2026-10-20 | 2027-07-31 |  |  |  |  |  |  |  |  |  |  |  |  |
| MKH2-02-003-TC-1000 |  | Test for Electrical Networks | 6d | 2026-10-20 A | 2027-05-30 | MKH2-02-003-CN-1880, MKH2-02-003-CN-1870, MKH2-02-003-CN-1860, MKH2-02-003-CN-1850, MKH2-02-003-CN-1660, MKH2-02-003-CN-1850 FF | 75% | 6d | 2027-06-13 | 2027-06-19 | 20d | 0d | QA/QC Engineer [4140 h]; Cost for Testing & Comissioning [70] | 1,300,637.9 | 975,478.43 | T&C-1020 |  |
| MKH2-02-003-TC-1010 |  | Test for Box Culvert | 6d | 2027-03-29 | 2027-04-04 | MKH2-02-003-CN-2080, MKH2-02-003-CN-2120, MKH2-02-003-CN-1660 |  |  |  |  | 23d | 0d | QA/QC Engineer [3400 h]; Cost for Testing & Comissioning [70] | 1,300,637.9 |  | T&C-1030 |  |
| MKH2-02-003-TC-1020 |  | Test for Open Drain channel | 10d | 2027-06-17 | 2027-06-28 | MKH2-02-003-CN-2310, MKH2-02-003-CN-2300, MKH2-02-003-CN-2290, MKH2-02-003-CN-2280, MKH2-02-003-CN-2270, MKH2-02-003-CN-2260, MKH2-02-003-CN-2250, MKH2-02-003-CN-1660 |  |  |  |  | -2d | 0d | QA/QC Engineer [3600 h]; Cost for Testing & Comissioning [70] | 1,300,637.9 |  | T&C-1040 |  |
| MKH2-02-003-TC-1030 |  | Test for Roads | 6d | 2027-07-25 | 2027-07-31 | MKH2-02-003-CN-1660, MKH2-02-003-CN-1650, MKH2-02-003-CN-1680, MKH2-02-003-CN-1640, MKH2-02-003-CN-1630, MKH2-02-003-CN-1480, MKH2-02-003-CN-1470 |  |  |  |  | -24d | 0d | QA/QC Engineer [3600 h]; Cost for Testing & Comissioning [60] | 1,300,637.9 |  | T&C-1050 |  |

| ID | WBS | Activity | Duration | Start | Finish | Predecessors | Total float | Free float | Resources | Old Activity ID - MK |
| --- | --- | --- | --- | --- | --- | --- | --- | --- | --- | --- |
|  | PRO C & DEM | **PROJECT CLOSEOUT & DEMOBILIZATION** |  | 2027-04-05 | 2027-09-11 |  |  |  |  |  |
|  | 1 | **As-Built DWGs** |  | 2027-04-05 | 2027-08-16 |  |  |  |  |  |
|  | 1 | **As-Built DWGs Submittals** |  | 2027-04-05 | 2027-08-08 |  |  |  |  |  |
| MKH2-02-003-CO-1050 |  | As-Built DWGs Submittal for Box Culvert | 7d | 2027-04-05 | 2027-04-12 | MKH2-02-003-TC-1010 | 23d | 0d | Draftsman [840 h] | T&C-1070 |
| MKH2-02-003-CO-1040 |  | As-Built DWGs Submittal for Electrical Networks | 7d | 2027-05-31 | 2027-06-07 | MKH2-02-003-TC-1000 | 20d | 0d | Draftsman [1250 h] | T&C-1060 |
| MKH2-02-003-CO-1060 |  | As-Built DWGs Submittal for Open Drain channel | 10d | 2027-06-29 | 2027-07-10 | MKH2-02-003-TC-1020 | -2d | 0d | Draftsman [810 h] | T&C-1080 |
| MKH2-02-003-CO-1070 |  | As-Built DWGs Submittal for Roads | 7d | 2027-08-01 | 2027-08-08 | MKH2-02-003-TC-1030, MKH2-02-003-MS-1050 | -24d | 0d | Draftsman [1020 h] | T&C-1090 |
|  | 2 | **As-Built DWGs Approvals** |  | 2027-04-13 | 2027-08-16 |  |  |  |  |  |
| MKH2-02-003-CO-1090 |  | As-Built DWGs Approval for Box Culvert | 7d | 2027-04-13 | 2027-04-20 | MKH2-02-003-CO-1050 | 23d | 0d | Consultant Staff [320 h] | T&C-1110 |
| MKH2-02-003-CO-1080 |  | As-Built DWGs Approval for Electrical Networks | 9d | 2027-06-08 | 2027-06-17 | MKH2-02-003-CO-1040 | 20d | 44d | Consultant Staff [320 h] | T&C-1100 |
| MKH2-02-003-CO-1100 |  | As-Built DWGs Approval for Open Drain channel | 10d | 2027-07-11 | 2027-07-21 | MKH2-02-003-CO-1060 | -2d | 22d | Consultant Staff [950 h] | T&C-1120 |
| MKH2-02-003-CO-1110 |  | As-Built DWGs Approval for Roads | 7d | 2027-08-09 | 2027-08-16 | MKH2-02-003-CO-1070, MKH2-02-003-CO-1080 | -24d | 0d | Consultant Staff [920 h] | T&C-1130 |
|  | 2 | **Demobilization** |  | 2027-08-17 | 2027-09-11 |  |  |  |  |  |
| MKH2-02-003-CO-1000 |  | Demobilization of Manpower | 5d | 2027-08-17 | 2027-08-22 | MKH2-02-003-CO-1080, MKH2-02-003-CO-1090, MKH2-02-003-CO-1100, MKH2-02-003-CO-1110 | -24d | 0d | Labor [1230 h] | A1090 |
| MKH2-02-003-CO-1010 |  | Removal of Equipment from Site | 5d | 2027-08-23 | 2027-08-28 | MKH2-02-003-CO-1000 | -24d | 0d | Labor [720 h] | A1100 |
| MKH2-02-003-CO-1020 |  | Site Clean Up | 5d | 2027-08-29 | 2027-09-02 | MKH2-02-003-CO-1010 | -24d | 0d | Labor [740 h] | A1110 |
| MKH2-02-003-CO-1030 |  | Restoration of Ground Surfaces | 7d | 2027-09-04 | 2027-09-11 | MKH2-02-003-CO-1020 | -24d | 0d | Labor [700 h] | A1120 |

## Activity codes

| Code | Value | Meaning |
| --- | --- | --- |
| Construction | EW1 | Electrical Works |
| Construction | OP1 | Open Drain Channel |
| Construction | RD1 | Road Works |
| Procurement | EW2 | Electrical Works Materials |
| Procurement | OP2 | Open Drain Channel Materials |
| Procurement | RD2 | Road Works Materials |
| Shop Drawings | EW3 | Shop Dwgs For Electrical Works |
| Shop Drawings | OP3 | Shop Dwgs For Open Drain Channel |
| Shop Drawings | RD3 | Shop Dwgs For Road Works |
