# ????? ????? ????? ?????? ??????? ???????? ???????? ???????? ??????? ???? ??????? (????????)

Schedule from Primavera P6, 2026-06-25 to 2027-08-24, data date 2026-06-25, costs in SR.
Must finish by 2027-08-24

## Calendars

- MODON-(6 Day X 10Hrs): Mon-Thu 07:00-17:00; Fri off; Sat-Sun 07:00-17:00. Exceptions (off unless hours are given): 2026-09-23, 2027-02-22, 2027-03-10 to 2027-03-11, 2027-03-13, 2027-05-15 to 2027-05-18.
- MODON-(6 Day X 8hrs): Mon-Thu 07:00-11:00, 13:00-17:00; Fri off; Sat-Sun 07:00-11:00, 13:00-17:00. Exceptions (off unless hours are given): 2026-09-23, 2027-02-22, 2027-03-10 to 2027-03-11, 2027-03-13, 2027-05-15 to 2027-05-18.

## Resources

| Resource | Group | Rate |
| --- | --- | --- |
| Roadway Excavation for cuttings (all types of soil) | material | 22 |
| Excavator | equipment |  |
| Bulldozer | equipment |  |
| Water Tanker | equipment |  |
| Grader | equipment |  |
| Truck | equipment |  |
| Bobcat | equipment |  |
| Labor | labor |  |
| Driver | labor |  |
| Eq. Operator | labor |  |
| Embankments to the ROW with common / suitable excavated material or with suitable imported material | material | 16 |
| Road Roller | equipment |  |
| Compactor | equipment |  |
| Subgrade | material | 22 |
| Aggregate base course | material | 52 |
| Loader | equipment |  |
| Bituminous base course (Grading I - Class A), including Prime Coat (MC1) | material | 560 |
| Asphalte Paver | equipment |  |
| Precast Concrete Kerb, Type K1-A | material | 59.74 |
| Skilled Labor | labor |  |
| Precast Concrete Kerb, Type K4 | material | 59.74 |
| Precast Concrete Kerb, Type K1-B | material | 59.74 |
| Depressed curbs Type K2 | material | 59.74 |
| 60mm thick - Interlocking block pavers for sidewalk/footpath | material | 70 |
| Mason | labor |  |
| Retroreflective Thermoplastic White Traffic lines | material | 45 |
| Retroreflective Thermoplastic Yellow, Traffic lines | material | 45 |
| (Speed Hump) with retroreflectiveThermoplastic yellow | material | 12000 |
| Traffic signs, ground mounted, Sheet Alumenium, (breakaway)Single post, with all accessories | material | 1800 |
| Depth: 0.0m - 1.5m | material | 106.65 |
| Depth: 1.51m - 2.5m | material | 106.65 |
| Depth: 0.0m - 1.5m | material | 533.27 |
| Plumber | labor |  |
| Depth: 1.51m - 2.5m | material | 533.27 |
| Crane | equipment |  |
| Depth: more than 2.5m | material | 533.27 |
| Depth: 0.0m - 1.5m | material | 533.27 |
| Depth: more than 2.5m | material | 213.31 |
| Depth: 0.0m - 1.5m | material | 213.31 |
| Depth: 1.51m - 2.5m | material | 213.31 |
| Depth: 2.51m - 3.5m | material | 213.31 |
| Depth: less than 2.5 m | material | 106.65 |
| Depth: 2.51m - 3.5m | material | 106.65 |
| Depth: 3.51m - 4.5m | material | 106.65 |
| Depth: 4.51m - 5.5 m | material | 106.65 |
| Single Catch basin | material | 7360.68 |
| Double Catch basin | material | 7360.68 |
| 300mm Diameter | material | 83.57 |
| 400mm Diameter | material | 250.7 |
| Depth: > 2.5m | material | 106.65 |
| Depth: more than 2.5m | material | 533.27 |
| Depth: 0.0m - 1.5m | material | 533.27 |
| Depth: 1.51m - 2.5m | material | 533.27 |
| Depth: 1.51m - 2.5m | material | 533.27 |
| Depth: 1.51m - 2.5m | material | 213.31 |
| Depth: more than 2.5m | material | 213.31 |
| Depth: 0.0m - 1.5m | material | 213.31 |
| Depth: more than 3.5m | material | 213.31 |
| Depth: > 3.5m | material | 106.65 |
| Depth: less than 2.5 m | material | 106.65 |
| Depth: 2.51m - 3.5m | material | 106.65 |
| Depth: more than 5.5m | material | 106.65 |
| MH depth 0 - 1.5m | material | 23576.4 |
| MH depth 1.51 - 2.5m | material | 23576.4 |
| MH depth more than 2.5 m | material | 23576.4 |
| MH depth 0 - 1.5m | material | 23576.4 |
| MH depth 1.51 - 2.5m | material | 23576.4 |
| MH depth more than 2.5 m | material | 23576.4 |
| MH depth 0 - 1.5m | material | 23576.4 |
| MH depth 1.51 - 2.5m | material | 23576.4 |
| MH depth 2.51 - 3.5m | material | 23576.4 |
| MH depth 3.51 - 4.5m | material | 23576.4 |
| MH depth 4.51 - 5.5 m | material | 23576.4 |
| MH depth more than 5.5 m | material | 23576.4 |

## Schedule

| ID | WBS | Activity | Type | Duration | Start | Finish | Predecessors | Total float | Free float | Calendar | HM MAkkah 03 old activity id |
| --- | --- | --- | --- | --- | --- | --- | --- | --- | --- | --- | --- |
|  | 1 | **Key Milestones** |  |  | 2026-06-25 | 2027-08-24 |  |  |  |  |  |
|  | 1 | **General Milestone** |  |  | 2026-06-25 | 2027-08-24 |  |  |  |  |  |
| MKH2-02-004-KM-1000 |  | Project Commencement Date | milestone | 0d | 2026-06-25 | 2026-06-25 |  | 0d |  |  | JDH4-02-007-MS-1000 |
| MKH2-02-004-KM-1010 |  | Project Completion Date | milestone | 0d | 2027-08-24 | 2027-08-24 | MKH2-02-004-KM-1070 FF, MKH2-02-004-DEM-1040 FF | 0d |  |  | JDH4-02-007-MS-1010 |
|  | 2 | **Contractual Milestone** |  |  | 2026-07-12 | 2027-08-24 |  |  |  |  |  |
|  | 1 | **Engineering & Mobilization** |  |  | 2026-07-12 | 2026-08-23 |  |  |  |  |  |
| MKH2-02-004-KM-1030 |  | Submission of the Work Plan (Baseline Programme) | milestone | 0d | 2026-07-12 | 2026-07-12 | MKH2-02-004-MOB-1120 FF | 0d |  |  | JDH4-02-007-MS-1030 |
| MKH2-02-004-KM-1020 |  | Completion of Mobilization | milestone | 0d | 2026-07-23 | 2026-07-23 | MKH2-02-004-MOB-1040 FF, MKH2-02-004-MOB-1190 FF, MKH2-02-004-MOB-1200 FF, MKH2-02-004-MOB-1210 FF, MKH2-02-004-MOB-1220 FF, MKH2-02-004-MOB-1230 FF, MKH2-02-004-MOB-1180 FF | 0d |  |  | JDH4-02-007-MS-1020 |
| MKH2-02-004-KM-1040 |  | Submission and Approval of Drawings and Materials | milestone | 0d | 2026-08-23 | 2026-08-23 | MKH2-02-004-SHD-1200 FF, MKH2-02-004-SHD-1190 FF, MKH2-02-004-SHD-1180 FF, MKH2-02-004-SHD-1170 FF, MKH2-02-004-SHD-1160 FF, MKH2-02-004-SHD-1150 FF, MKH2-02-004-SHD-1140 FF, MKH2-02-004-SHD-1130 FF, MKH2-02-004-SHD-1230 FF, MKH2-02-004-SHD-1220 FF, MKH2-02-004-SHD-1210 FF, MKH2-02-004-MTS-1010 FF, MKH2-02-004-MTS-1030 FF, MKH2-02-004-MTS-1050 FF, MKH2-02-004-MTS-1070 FF, MKH2-02-004-MTS-1090 FF, MKH2-02-004-MTS-1110 FF, MKH2-02-004-MTS-1130 FF, MKH2-02-004-MTS-1170 FF, MKH2-02-004-MTS-1150 FF, MKH2-02-004-SHD-1120 FF | 18d | 0d | MODON-(6 Day X 8hrs) | JDH4-02-007-MS-1040 |
|  | 2 | **Construction** |  |  | 2027-02-24 | 2027-08-24 |  |  |  |  |  |
| MKH2-02-004-KM-1060 |  | Completion of Storm Water Drainage | milestone | 0d | 2027-02-24 | 2027-02-24 | MKH2-02-004-CNS-3340 FF | 15d | 0d |  | JDH4-02-007-MS-1060 |
| MKH2-02-004-KM-1050 |  | Completion of Road Works | milestone | 0d | 2027-04-24 | 2027-04-24 | MKH2-02-004-CNS-1480 FF | 15d | 0d |  | JDH4-02-007-MS-1050 |
| MKH2-02-004-KM-1070 |  | Completion of Entire Project | milestone | 0d | 2027-08-24 | 2027-08-24 | MKH2-02-004-DEM-1040 FF | 0d |  |  | JDH4-02-007-MS-1110 |
|  | 2 | **Mobilization** |  |  | 2026-06-25 | 2026-07-23 |  |  |  |  |  |
|  | 2 | **Site Facilities & Offices** |  |  | 2026-06-25 | 2026-07-23 |  |  |  |  |  |
| MKH2-02-004-MOB-1000 |  | Site Layout Plan |  | 5d | 2026-06-25 | 2026-06-30 | MKH2-02-004-KM-1000 SS | 0d |  |  | JDH4-02-007-MB-1000 |
| MKH2-02-004-MOB-1010 |  | Clear & Grub for Offices & Access Road |  | 4d | 2026-07-01 | 2026-07-05 | MKH2-02-004-MOB-1000 | 0d |  |  | JDH4-02-007-MB-1010 |
| MKH2-02-004-MOB-1020 |  | Construct Site Access Roads |  | 3d | 2026-07-01 | 2026-07-04 | MKH2-02-004-MOB-1000 | 0d |  |  | JDH4-02-007-MB-1020 |
| MKH2-02-004-MOB-1040 |  | Construct Site Offices & Storage |  | 17d | 2026-07-05 | 2026-07-23 | MKH2-02-004-MOB-1020 | 0d |  |  | JDH4-02-007-MB-1040 |
| MKH2-02-004-MOB-1050 |  | Install Project Signs |  | 10d | 2026-07-05 | 2026-07-15 | MKH2-02-004-MOB-1020 | 0d |  |  | JDH4-02-007-MB-1050 |
| MKH2-02-004-MOB-1030 |  | Construct Temporary Fence |  | 7d | 2026-07-06 | 2026-07-13 | MKH2-02-004-MOB-1010 | 0d |  |  | JDH4-02-007-MB-1030 |
| MKH2-02-004-MOB-1060 |  | Install Site Facilities |  | 4d | 2026-07-14 | 2026-07-18 | MKH2-02-004-MOB-1030 | 0d |  |  | JDH4-02-007-MB-1060 |
| MKH2-02-004-MOB-1070 |  | Electrical Works & Connections |  | 7d | 2026-07-14 | 2026-07-21 | MKH2-02-004-MOB-1030 | 2d |  |  | JDH4-02-007-MB-1070 |
| MKH2-02-004-MOB-1080 |  | Construct Parking Sheds |  | 7d | 2026-07-14 | 2026-07-21 | MKH2-02-004-MOB-1030 | 2d |  |  | JDH4-02-007-MB-1080 |
| MKH2-02-004-MOB-1090 |  | Mobilization of Equipment |  | 7d | 2026-07-16 | 2026-07-23 | MKH2-02-004-MOB-1050 | 0d |  |  | JDH4-02-007-MB-1090 |
| MKH2-02-004-MOB-1100 |  | Mobilization of Manpower |  | 5d | 2026-07-19 | 2026-07-23 | MKH2-02-004-MOB-1060 | 0d |  |  | JDH4-02-007-MB-1100 |

| ID | WBS | Activity | Duration | Start | Finish | Predecessors | Total float | Free float | Calendar | HM MAkkah 03 old activity id | Shop Drawings |
| --- | --- | --- | --- | --- | --- | --- | --- | --- | --- | --- | --- |
|  | 4 | **Topographic Survey** |  | 2026-06-25 | 2026-07-18 |  |  |  |  |  |  |
| MKH2-02-004-MOB-1240 |  | Site Survey Works | 20d | 2026-06-25 | 2026-07-18 | MKH2-02-004-KM-1000 SS | 1d | 0d |  | JDH4-02-007-TP-1000 |  |
|  | 1 | **Permit's and Authority Approvals** |  | 2026-06-25 | 2026-07-18 |  |  |  |  |  |  |
| MKH2-02-004-MOB-1110 |  | Excavation & Backfilling Permit | 20d | 2026-06-25 | 2026-07-18 | MKH2-02-004-KM-1000 SS | 5d |  |  | JDH4-02-007-PA-1000 |  |
|  | 3 | **Preliminary Submittals** |  | 2026-07-05 | 2026-07-23 |  |  |  |  |  |  |
|  | 1 | **Preparation and Submittal by Contractor's** |  | 2026-07-05 | 2026-07-12 |  |  |  |  |  |  |
| MKH2-02-004-MOB-1120 |  | Preparation and Submittal of Detailed Work Order Programme (baseline schedule) | 7d | 2026-07-05 | 2026-07-12 | MKH2-02-004-MOB-1020 | 0d |  |  | JDH4-02-007-PS-1000 |  |
| MKH2-02-004-MOB-1130 |  | Preparation and Submittal of Project Execution Plan | 7d | 2026-07-05 | 2026-07-12 | MKH2-02-004-MOB-1020 | 0d |  |  | JDH4-02-007-PS-1010 |  |
| MKH2-02-004-MOB-1140 |  | Preparation and Submittal of Quality Management Plan | 7d | 2026-07-05 | 2026-07-12 | MKH2-02-004-MOB-1020 | 0d |  |  | JDH4-02-007-PS-1020 |  |
| MKH2-02-004-MOB-1150 |  | Preparation and Submittal of Safety Management Plan | 7d | 2026-07-05 | 2026-07-12 | MKH2-02-004-MOB-1020 | 0d |  |  | JDH4-02-007-PS-1030 |  |
| MKH2-02-004-MOB-1160 |  | Preparation and Submittal of Organization Chart | 7d | 2026-07-05 | 2026-07-12 | MKH2-02-004-MOB-1020 | 0d |  |  | JDH4-02-007-PS-1040 |  |
| MKH2-02-004-MOB-1170 |  | Preparation and Submittal of Communication Plan | 7d | 2026-07-05 | 2026-07-12 | MKH2-02-004-MOB-1020 | 0d |  |  | JDH4-02-007-PS-1050 |  |
|  | 2 | **Approval by the Employer's** |  | 2026-07-13 | 2026-07-23 |  |  |  |  |  |  |
| MKH2-02-004-MOB-1180 |  | Approval of Detailed Work Order Programme (baseline schedule) | 10d | 2026-07-13 | 2026-07-23 | MKH2-02-004-MOB-1120, MKH2-02-004-KM-1030 | 0d |  | MODON-(6 Day X 8hrs) | JDH4-02-007-PS-1060 |  |
| MKH2-02-004-MOB-1190 |  | Approval of Project Execution Plan | 10d | 2026-07-13 | 2026-07-23 | MKH2-02-004-MOB-1130 | 0d |  | MODON-(6 Day X 8hrs) | JDH4-02-007-PS-1070 |  |
| MKH2-02-004-MOB-1200 |  | Approval of Quality Management Plan | 10d | 2026-07-13 | 2026-07-23 | MKH2-02-004-MOB-1140 | 0d |  | MODON-(6 Day X 8hrs) | JDH4-02-007-PS-1080 |  |
| MKH2-02-004-MOB-1210 |  | Approval of Safety Management Plan | 10d | 2026-07-13 | 2026-07-23 | MKH2-02-004-MOB-1150 | 0d |  | MODON-(6 Day X 8hrs) | JDH4-02-007-PS-1090 |  |
| MKH2-02-004-MOB-1220 |  | Approval of Organization Chart | 10d | 2026-07-13 | 2026-07-23 | MKH2-02-004-MOB-1160 | 0d |  | MODON-(6 Day X 8hrs) | JDH4-02-007-PS-1100 |  |
| MKH2-02-004-MOB-1230 |  | Approval of Comminumcation Plan | 10d | 2026-07-13 | 2026-07-23 | MKH2-02-004-MOB-1170 | 0d |  | MODON-(6 Day X 8hrs) | JDH4-02-007-PS-1110 |  |
|  | 3 | **Engineering** |  | 2026-07-01 | 2026-08-23 |  |  |  |  |  |  |
|  | 2 | **Shop Drawings** |  | 2026-07-19 | 2026-08-17 |  |  |  |  |  |  |
|  | 1 | **Shop Drawings Submittal** |  | 2026-07-19 | 2026-08-05 |  |  |  |  |  |  |
|  | 1 | **Shop Drawings Submittal for Road Works** |  | 2026-07-19 | 2026-08-05 |  |  |  |  |  |  |
| MKH2-02-004-SHD-1000 |  | Shop DWG Submittal for Topographic Survey | 8d | 2026-07-19 | 2026-07-27 | MKH2-02-004-MOB-1240 | 23d | 0d |  | JDH4-02-007-EN-1040 | RSD |
| MKH2-02-004-SHD-1010 |  | Shop DWG Submittal for Road Layout Plan | 8d | 2026-07-28 | 2026-08-05 | MKH2-02-004-SHD-1000 | 23d | 0d |  | JDH4-02-007-EN-1050 | RSD |
| MKH2-02-004-SHD-1020 |  | Shop DWG Submittal for Typical Cross Section | 8d | 2026-07-28 | 2026-08-05 | MKH2-02-004-SHD-1000 | 23d | 0d |  | JDH4-02-007-EN-1060 | RSD |
| MKH2-02-004-SHD-1030 |  | Shop DWG Submittal for Road Setting Out | 8d | 2026-07-28 | 2026-08-05 | MKH2-02-004-SHD-1000 | 23d | 0d |  | JDH4-02-007-EN-1070 | RSD |
| MKH2-02-004-SHD-1040 |  | Shop DWG Submittal for Road Profiles | 8d | 2026-07-28 | 2026-08-05 | MKH2-02-004-SHD-1000 | 23d | 0d |  | JDH4-02-007-EN-1080 | RSD |
| MKH2-02-004-SHD-1050 |  | Shop DWG Submittal for Grading Layout Plan | 8d | 2026-07-28 | 2026-08-05 | MKH2-02-004-SHD-1000 | 23d | 0d |  | JDH4-02-007-EN-1090 | RSD |
| MKH2-02-004-SHD-1060 |  | Shop DWG Submittal for Curb Setting Out Points | 8d | 2026-07-28 | 2026-08-05 | MKH2-02-004-SHD-1000 | 23d | 0d |  | JDH4-02-007-EN-1100 | RSD |
| MKH2-02-004-SHD-1070 |  | Shop DWG Submittal for Signing & Marking Layout Plan | 8d | 2026-07-28 | 2026-08-05 | MKH2-02-004-SHD-1000 | 23d | 0d |  | JDH4-02-007-EN-1110 | RSD |
| MKH2-02-004-SHD-1080 |  | Shop DWG Submittal for Standards Details | 8d | 2026-07-28 | 2026-08-05 | MKH2-02-004-SHD-1000 | 23d | 0d |  | JDH4-02-007-EN-1120 | RSD |

| ID | WBS | Activity | Duration | Start | Finish | Predecessors | Total float | Free float | Calendar | HM MAkkah 03 old activity id | Shop Drawings |
| --- | --- | --- | --- | --- | --- | --- | --- | --- | --- | --- | --- |
|  | 6 | **Shop Drawings Submittal for Stormwater Network** |  | 2026-07-19 | 2026-07-27 |  |  |  |  |  |  |
| MKH2-02-004-SHD-1090 |  | Shop DWG Submittal for Stormwater Plans | 8d | 2026-07-19 | 2026-07-27 | MKH2-02-004-MOB-1240 | 6d | 0d |  | JDH4-02-007-EN-1250 | SSD |
| MKH2-02-004-SHD-1100 |  | Shop DWG Submittal for Stormwater Profiles | 8d | 2026-07-19 | 2026-07-27 | MKH2-02-004-MOB-1240 | 1d | 0d |  | JDH4-02-007-EN-1260 | SSD |
| MKH2-02-004-SHD-1110 |  | Shop DWG Submittal for Stormwater Standard Details | 8d | 2026-07-19 | 2026-07-27 | MKH2-02-004-MOB-1240 | 6d | 0d |  | JDH4-02-007-EN-1270 | SSD |
|  | 2 | **Shop Drawings Approval** |  | 2026-07-28 | 2026-08-17 |  |  |  |  |  |  |
|  | 1 | **Shop Drawings Approval for Road Works** |  | 2026-07-28 | 2026-08-17 |  |  |  |  |  |  |
| MKH2-02-004-SHD-1120 |  | Shop DWG Approval for Topographic Survey | 10d | 2026-07-28 | 2026-08-08 | MKH2-02-004-SHD-1000 | 31d | 13d | MODON-(6 Day X 8hrs) | JDH4-02-007-EN-1320 | RSD |
| MKH2-02-004-SHD-1130 |  | Shop DWG Approval for Road Layout Plan | 10d | 2026-08-06 | 2026-08-17 | MKH2-02-004-SHD-1010 | 23d | 5d | MODON-(6 Day X 8hrs) | JDH4-02-007-EN-1330 | RSD |
| MKH2-02-004-SHD-1140 |  | Shop DWG Approval for Typical Cross Section | 10d | 2026-08-06 | 2026-08-17 | MKH2-02-004-SHD-1020 | 23d | 5d | MODON-(6 Day X 8hrs) | JDH4-02-007-EN-1340 | RSD |
| MKH2-02-004-SHD-1150 |  | Shop DWG Approval for Road Setting Out | 10d | 2026-08-06 | 2026-08-17 | MKH2-02-004-SHD-1030 | 23d | 5d | MODON-(6 Day X 8hrs) | JDH4-02-007-EN-1350 | RSD |
| MKH2-02-004-SHD-1160 |  | Shop DWG Approval for Road Profiles | 10d | 2026-08-06 | 2026-08-17 | MKH2-02-004-SHD-1040 | 23d | 5d | MODON-(6 Day X 8hrs) | JDH4-02-007-EN-1360 | RSD |
| MKH2-02-004-SHD-1170 |  | Shop DWG Approval for Grading Layout Plan | 10d | 2026-08-06 | 2026-08-17 | MKH2-02-004-SHD-1050 | 23d | 5d | MODON-(6 Day X 8hrs) | JDH4-02-007-EN-1370 | RSD |
| MKH2-02-004-SHD-1180 |  | Shop DWG Approval for Curb Setting Out Points | 10d | 2026-08-06 | 2026-08-17 | MKH2-02-004-SHD-1060 | 23d | 5d | MODON-(6 Day X 8hrs) | JDH4-02-007-EN-1380 | RSD |
| MKH2-02-004-SHD-1190 |  | Shop DWG Approval for Signing & Marking Layout Plan | 10d | 2026-08-06 | 2026-08-17 | MKH2-02-004-SHD-1070 | 23d | 5d | MODON-(6 Day X 8hrs) | JDH4-02-007-EN-1390 | RSD |
| MKH2-02-004-SHD-1200 |  | Shop DWG Approval for Standards Details | 10d | 2026-08-06 | 2026-08-17 | MKH2-02-004-SHD-1080, MKH2-02-004-SHD-1090, MKH2-02-004-SHD-1100, MKH2-02-004-SHD-1110 | 23d | 5d | MODON-(6 Day X 8hrs) | JDH4-02-007-EN-1400 | RSD |
|  | 6 | **Shop Drawings Approval for Storm Network** |  | 2026-07-28 | 2026-08-08 |  |  |  |  |  |  |
| MKH2-02-004-SHD-1210 |  | Shop DWG Approval for Stormwater Plans | 10d | 2026-07-28 | 2026-08-08 | MKH2-02-004-SHD-1090 | 6d |  | MODON-(6 Day X 8hrs) | JDH4-02-007-EN-1530 | SSD |
| MKH2-02-004-SHD-1220 |  | Shop DWG Approval for Stormwater Profiles | 10d | 2026-07-28 | 2026-08-08 | MKH2-02-004-SHD-1100 | 1d |  | MODON-(6 Day X 8hrs) | JDH4-02-007-EN-1540 | SSD |
| MKH2-02-004-SHD-1230 |  | Shop DWG Approval for Stormwater Standard Details | 10d | 2026-07-28 | 2026-08-08 | MKH2-02-004-SHD-1110 | 6d |  | MODON-(6 Day X 8hrs) | JDH4-02-007-EN-1550 | SSD |
|  | 3 | **Method Statements** |  | 2026-07-01 | 2026-08-11 |  |  |  |  |  |  |
|  | 1 | **Method Statements Submittal** |  | 2026-07-01 | 2026-07-30 |  |  |  |  |  |  |
| MKH2-02-004-MST-1000 |  | Preparation & Submission of Method Statement for Earthworks | 8d | 2026-07-01 | 2026-07-09 | MKH2-02-004-MOB-1000 | 2d | 0d |  | JDH4-02-007-EN-1560 |  |
| MKH2-02-004-MST-1010 |  | Preparation & Submission of Method Statement for Concrete Works | 8d | 2026-07-11 | 2026-07-19 | MKH2-02-004-MST-1000 | 22d | 0d |  | JDH4-02-007-EN-1570 |  |
| MKH2-02-004-MST-1020 |  | Preparation & Submission of Method Statement for Asphalt | 10d | 2026-07-20 | 2026-07-30 | MKH2-02-004-MST-1010 | 28d | 0d |  | JDH4-02-007-EN-1590 |  |

| ID | WBS | Activity | Duration | Start | Finish | Predecessors | Total float | Free float | Calendar | HM MAkkah 03 old activity id |
| --- | --- | --- | --- | --- | --- | --- | --- | --- | --- | --- |
|  | 2 | **Method Statements Approval** |  | 2026-07-11 | 2026-08-11 |  |  |  |  |  |
| MKH2-02-004-MST-1030 |  | Approval of Method Statement for Earthworks | 10d | 2026-07-11 | 2026-07-21 | MKH2-02-004-MST-1000 | 2d |  | MODON-(6 Day X 8hrs) | JDH4-02-007-EN-1720 |
| MKH2-02-004-MST-1040 |  | Approval of Method Statement for Concrete Works | 10d | 2026-07-20 | 2026-07-30 | MKH2-02-004-MST-1010 | 22d | 4d | MODON-(6 Day X 8hrs) | JDH4-02-007-EN-1730 |
| MKH2-02-004-MST-1050 |  | Approval of Method Statement for Asphalt | 10d | 2026-08-01 | 2026-08-11 | MKH2-02-004-MST-1020 | 28d | 10d | MODON-(6 Day X 8hrs) | JDH4-02-007-EN-1750 |
|  | 4 | **Pre-qualification and Material** |  | 2026-07-06 | 2026-08-23 |  |  |  |  |  |
|  | 2 | **Pre-qualification** |  | 2026-07-06 | 2026-08-04 |  |  |  |  |  |
|  | 1 | **Road Works - Civil** |  | 2026-07-19 | 2026-08-04 |  |  |  |  |  |
|  | 4 | **Aggregate Base Course** |  | 2026-07-19 | 2026-08-04 |  |  |  |  |  |
| MKH2-02-004-PRQ-1000 |  | Pre-Qualification Submittal for Aggregate Base Cource | 5d | 2026-07-19 | 2026-07-23 | MKH2-02-004-MOB-1240 | 18d | 0d |  | JDH4-02-007-SB-1000 |
| MKH2-02-004-PRQ-1010 |  | Pre-Qualification Approval for Aggregate Base Cource | 10d | 2026-07-25 | 2026-08-04 | MKH2-02-004-PRQ-1000 | 18d | 0d | MODON-(6 Day X 8hrs) | JDH4-02-007-SB-1010 |
|  | 5 | **Bituminous Base Course** |  | 2026-07-19 | 2026-08-04 |  |  |  |  |  |
| MKH2-02-004-PRQ-1020 |  | Pre-Qualification Submittal for Bituminous Base Cource | 5d | 2026-07-19 | 2026-07-23 | MKH2-02-004-PRQ-1000 SS | 18d | 0d |  | JDH4-02-007-SB-1020 |
| MKH2-02-004-PRQ-1030 |  | Pre-Qualification Approval for Bituminous Base Cource | 10d | 2026-07-25 | 2026-08-04 | MKH2-02-004-PRQ-1020 | 18d | 0d | MODON-(6 Day X 8hrs) | JDH4-02-007-SB-1030 |
|  | 7 | **Precast Concrete Kerb** |  | 2026-07-19 | 2026-08-04 |  |  |  |  |  |
| MKH2-02-004-PRQ-1040 |  | Pre-Qualification Submittal for Precast Concrete Kerb | 5d | 2026-07-19 | 2026-07-23 | MKH2-02-004-PRQ-1020 SS | 18d | 0d |  | JDH4-02-007-SB-1040 |
| MKH2-02-004-PRQ-1050 |  | Pre-Qualification Approval for Precast Concrete Kerb | 10d | 2026-07-25 | 2026-08-04 | MKH2-02-004-PRQ-1040, MKH2-02-004-MST-1040 FF | 18d | 0d | MODON-(6 Day X 8hrs) | JDH4-02-007-SB-1050 |
|  | 8 | **Interlocking Block Pavers** |  | 2026-07-19 | 2026-08-04 |  |  |  |  |  |
| MKH2-02-004-PRQ-1060 |  | Pre-Qualification Submittal for Interlocking Block Pavers | 5d | 2026-07-19 | 2026-07-23 | MKH2-02-004-PRQ-1040 SS | 18d | 0d |  | JDH4-02-007-SB-1060 |
| MKH2-02-004-PRQ-1070 |  | Pre-Qualification Approval for Interlocking Block Pavers | 10d | 2026-07-25 | 2026-08-04 | MKH2-02-004-PRQ-1060 | 18d | 0d | MODON-(6 Day X 8hrs) | JDH4-02-007-SB-1070 |
|  | 9 | **Pavement Markings** |  | 2026-07-19 | 2026-08-04 |  |  |  |  |  |
| MKH2-02-004-PRQ-1080 |  | Pre-Qualification Submittal for Pavement Markings | 5d | 2026-07-19 | 2026-07-23 | MKH2-02-004-PRQ-1060 SS | 18d | 0d |  | JDH4-02-007-SB-1080 |
| MKH2-02-004-PRQ-1090 |  | Pre-Qualification Approval for Pavement Markings | 10d | 2026-07-25 | 2026-08-04 | MKH2-02-004-PRQ-1080 | 18d | 0d | MODON-(6 Day X 8hrs) | JDH4-02-007-SB-1090 |
|  | 10 | **Traffic Signs** |  | 2026-07-19 | 2026-08-04 |  |  |  |  |  |
| MKH2-02-004-PRQ-1100 |  | Pre-Qualification Submittal for Traffic Signs | 5d | 2026-07-19 | 2026-07-23 | MKH2-02-004-PRQ-1060 SS | 18d | 0d |  | JDH4-02-007-SB-1100 |
| MKH2-02-004-PRQ-1110 |  | Pre-Qualification Approval for Traffic Signs | 10d | 2026-07-25 | 2026-08-04 | MKH2-02-004-PRQ-1100 | 18d | 0d | MODON-(6 Day X 8hrs) | JDH4-02-007-SB-1110 |

| ID | WBS | Activity | Duration | Start | Finish | Predecessors | Total float | Free float | Calendar | HM MAkkah 03 old activity id |
| --- | --- | --- | --- | --- | --- | --- | --- | --- | --- | --- |
|  | 7 | **Storm Network** |  | 2026-07-06 | 2026-07-28 |  |  |  |  |  |
|  | 2 | **GRP Pipes** |  | 2026-07-06 | 2026-07-22 |  |  |  |  |  |
| MKH2-02-004-PRQ-1120 |  | Pre-Qualification Submittal for GRP Pipe | 5d | 2026-07-06 | 2026-07-11 | MKH2-02-004-MOB-1010 | 0d |  |  | JDH4-02-007-SB-1260 |
| MKH2-02-004-PRQ-1130 |  | Pre-Qualification Approval for GRP Pipe | 10d | 2026-07-12 | 2026-07-22 | MKH2-02-004-PRQ-1120 | 0d |  | MODON-(6 Day X 8hrs) | JDH4-02-007-SB-1270 |
|  | 1 | **Catch Basin** |  | 2026-07-06 | 2026-07-22 |  |  |  |  |  |
| MKH2-02-004-PRQ-1160 |  | Pre-Qualification Submittal for Catch Basin | 5d | 2026-07-06 | 2026-07-11 | MKH2-02-004-MOB-1010 | 27d | 0d |  | JDH4-02-007-SB-1640 |
| MKH2-02-004-PRQ-1170 |  | Pre-Qualification Approval for Catch Basin | 10d | 2026-07-12 | 2026-07-22 | MKH2-02-004-PRQ-1160 | 27d | 0d | MODON-(6 Day X 8hrs) | JDH4-02-007-SB-1650 |
|  | 6 | **Inlet Manholes** |  | 2026-07-12 | 2026-07-28 |  |  |  |  |  |
| MKH2-02-004-PRQ-1140 |  | Pre-Qualification Submittal for Inlet Manholes | 5d | 2026-07-12 | 2026-07-16 | MKH2-02-004-PRQ-1120, MKH2-02-004-PRQ-1120 FF | 14d | 0d |  | JDH4-02-007-SB-1280 |
| MKH2-02-004-PRQ-1150 |  | Pre-Qualification Approval for Inlet Manholes | 10d | 2026-07-18 | 2026-07-28 | MKH2-02-004-PRQ-1140 | 14d | 0d | MODON-(6 Day X 8hrs) | JDH4-02-007-SB-1290 |
|  | 3 | **Material Submittal** |  | 2026-07-23 | 2026-08-23 |  |  |  |  |  |
|  | 1 | **Road Works - Civil** |  | 2026-08-05 | 2026-08-23 |  |  |  |  |  |
|  | 4 | **Aggregate Base Course** |  | 2026-08-05 | 2026-08-23 |  |  |  |  |  |
| MKH2-02-004-MTS-1000 |  | Design Submittal for Aggregate Base Cource | 6d | 2026-08-05 | 2026-08-11 | MKH2-02-004-PRQ-1010 | 18d | 0d |  | JDH4-02-007-MA-1000 |
| MKH2-02-004-MTS-1010 |  | Design Approval for Aggregate Base Cource | 10d | 2026-08-12 | 2026-08-23 | MKH2-02-004-MTS-1000 | 18d | 0d | MODON-(6 Day X 8hrs) | JDH4-02-007-MA-1010 |
|  | 5 | **Bituminous Base Course** |  | 2026-08-05 | 2026-08-23 |  |  |  |  |  |
| MKH2-02-004-MTS-1020 |  | Design Submittal for Bituminous Base Cource | 6d | 2026-08-05 | 2026-08-11 | MKH2-02-004-PRQ-1030 | 18d | 0d |  | JDH4-02-007-MA-1020 |
| MKH2-02-004-MTS-1030 |  | Design Approval for Bituminous Base Cource | 10d | 2026-08-12 | 2026-08-23 | MKH2-02-004-MTS-1020 | 18d | 0d | MODON-(6 Day X 8hrs) | JDH4-02-007-MA-1030 |
|  | 7 | **Precast Concrete Kerb** |  | 2026-08-05 | 2026-08-23 |  |  |  |  |  |
| MKH2-02-004-MTS-1040 |  | Material Submittal for Precast Concrete Kerb | 6d | 2026-08-05 | 2026-08-11 | MKH2-02-004-PRQ-1050 | 18d | 0d |  | JDH4-02-007-MA-1040 |
| MKH2-02-004-MTS-1050 |  | Material Approval for Precast Concrete Kerb | 10d | 2026-08-12 | 2026-08-23 | MKH2-02-004-MTS-1040 | 18d | 0d | MODON-(6 Day X 8hrs) | JDH4-02-007-MA-1050 |
|  | 8 | **Interlocking Block Pavers** |  | 2026-08-05 | 2026-08-23 |  |  |  |  |  |
| MKH2-02-004-MTS-1060 |  | Material Submittal for Interlocking Block Pavers | 6d | 2026-08-05 | 2026-08-11 | MKH2-02-004-PRQ-1070 | 18d | 0d |  | JDH4-02-007-MA-1060 |
| MKH2-02-004-MTS-1070 |  | Material Approval for Interlocking Block Pavers | 10d | 2026-08-12 | 2026-08-23 | MKH2-02-004-MTS-1060 | 18d | 0d | MODON-(6 Day X 8hrs) | JDH4-02-007-MA-1070 |

| ID | WBS | Activity | Duration | Start | Finish | Predecessors | Total float | Free float | Calendar | HM MAkkah 03 old activity id | Procurement |
| --- | --- | --- | --- | --- | --- | --- | --- | --- | --- | --- | --- |
|  | 9 | **Pavement Markings** |  | 2026-08-05 | 2026-08-23 |  |  |  |  |  |  |
| MKH2-02-004-MTS-1080 |  | Material Submittal for Pavement Markings | 6d | 2026-08-05 | 2026-08-11 | MKH2-02-004-PRQ-1090 | 18d | 0d |  | JDH4-02-007-MA-1080 |  |
| MKH2-02-004-MTS-1090 |  | Material Approval for Pavement Markings | 10d | 2026-08-12 | 2026-08-23 | MKH2-02-004-MTS-1080 | 18d | 0d | MODON-(6 Day X 8hrs) | JDH4-02-007-MA-1090 |  |
|  | 10 | **Traffic Signs** |  | 2026-08-05 | 2026-08-23 |  |  |  |  |  |  |
| MKH2-02-004-MTS-1100 |  | Material Submittal for Traffic Signs | 6d | 2026-08-05 | 2026-08-11 | MKH2-02-004-PRQ-1110 | 18d | 0d |  | JDH4-02-007-MA-1100 |  |
| MKH2-02-004-MTS-1110 |  | Material Approval for Traffic Signs | 10d | 2026-08-12 | 2026-08-23 | MKH2-02-004-MTS-1100 | 18d | 0d | MODON-(6 Day X 8hrs) | JDH4-02-007-MA-1110 |  |
|  | 7 | **Storm Network** |  | 2026-07-23 | 2026-08-15 |  |  |  |  |  |  |
|  | 2 | **GRP Pipes** |  | 2026-07-23 | 2026-08-09 |  |  |  |  |  |  |
| MKH2-02-004-MTS-1120 |  | Material Submittal for GRP Pipe | 5d | 2026-07-23 | 2026-07-28 | MKH2-02-004-PRQ-1130 | 0d |  |  | JDH4-02-007-MA-1250 |  |
| MKH2-02-004-MTS-1130 |  | Material Approval for GRP Pipe | 10d | 2026-07-29 | 2026-08-09 | MKH2-02-004-MTS-1120 | 0d |  | MODON-(6 Day X 8hrs) | JDH4-02-007-MA-1270 |  |
|  | 1 | **Catch Basin** |  | 2026-07-23 | 2026-08-09 |  |  |  |  |  |  |
| MKH2-02-004-MTS-1160 |  | Material Submittal for Catch Basin | 5d | 2026-07-23 | 2026-07-28 | MKH2-02-004-PRQ-1170 | 27d | 0d |  | JDH4-02-007-MA-1640 |  |
| MKH2-02-004-MTS-1170 |  | Material Approval for Catch Basin | 10d | 2026-07-29 | 2026-08-09 | MKH2-02-004-MTS-1160 | 27d | 0d | MODON-(6 Day X 8hrs) | JDH4-02-007-MA-1650 |  |
|  | 6 | **Inlet Manholes** |  | 2026-07-29 | 2026-08-15 |  |  |  |  |  |  |
| MKH2-02-004-MTS-1140 |  | Material Submittal for Inlet Manholes | 5d | 2026-07-29 | 2026-08-03 | MKH2-02-004-PRQ-1150 | 14d | 0d |  | JDH4-02-007-MA-1280 |  |
| MKH2-02-004-MTS-1150 |  | Material Approval for Inlet Manholes | 10d | 2026-08-04 | 2026-08-15 | MKH2-02-004-MTS-1140 | 14d | 0d | MODON-(6 Day X 8hrs) | JDH4-02-007-MA-1290 |  |
|  | 4 | **Procurement** |  | 2026-08-10 | 2026-11-30 |  |  |  |  |  |  |
|  | 1 | **Road Works - Civil** |  | 2026-08-24 | 2026-11-30 |  |  |  |  |  |  |
|  | 4 | **Aggregate Base Course** |  | 2026-08-24 | 2026-11-08 |  |  |  |  |  |  |
| MKH2-02-004-PRC-1000 |  | PO for Aggregate Base Course | 5d | 2026-08-24 | 2026-08-29 | MKH2-02-004-MTS-1010, MKH2-02-004-MST-1050, MKH2-02-004-KM-1040 | 18d | 0d |  | JDH4-02-007-PR-1380 | PR-RD |
| MKH2-02-004-PRC-1010 |  | Material Delivery for Aggregate Base Course-Stage 1 | 30d | 2026-08-30 | 2026-10-04 | MKH2-02-004-PRC-1000, MKH2-02-004-SHD-1200, MKH2-02-004-SHD-1130, MKH2-02-004-SHD-1140, MKH2-02-004-SHD-1150, MKH2-02-004-SHD-1160, MKH2-02-004-SHD-1170, MKH2-02-004-SHD-1180, MKH2-02-004-SHD-1190, MKH2-02-004-SHD-1120 | 18d | 0d |  | JDH4-02-007-PR-1389 | PR-RD |
| MKH2-02-004-PRC-1020 |  | Material Delivery for Aggregate Base Course-Stage 2 | 30d | 2026-10-05 | 2026-11-08 | MKH2-02-004-PRC-1010 | 18d | 5d |  | JDH4-02-007-PR-1390 | PR-RD |
|  | 5 | **Bituminous Base Course** |  | 2026-08-30 | 2026-11-25 |  |  |  |  |  |  |
| MKH2-02-004-PRC-1030 |  | PO for Bituminous Base Course | 5d | 2026-08-30 | 2026-09-03 | MKH2-02-004-MTS-1030, MKH2-02-004-PRC-1000 | 20d | 0d |  | JDH4-02-007-PR-1400 | PR-RD |
| MKH2-02-004-PRC-1040 |  | Material Delivery for Bituminous Base Course-Stage 1 | 35d | 2026-09-05 | 2026-10-15 | MKH2-02-004-PRC-1030 | 27d | 0d |  | JDH4-02-007-PR-1405 | PR-RD |
| MKH2-02-004-PRC-1050 |  | Material Delivery for Bituminous Base Course-Stage 2 | 35d | 2026-10-17 | 2026-11-25 | MKH2-02-004-PRC-1040 | 27d | 5d |  | JDH4-02-007-PR-1410 | PR-RD |

| ID | WBS | Activity | Duration | Start | Finish | Predecessors | Total float | Free float | HM MAkkah 03 old activity id | Procurement |
| --- | --- | --- | --- | --- | --- | --- | --- | --- | --- | --- |
|  | 7 | **Precast Concrete Curb** |  | 2026-09-05 | 2026-11-19 |  |  |  |  |  |
| MKH2-02-004-PRC-1060 |  | PO for Precast Concrete Curb | 5d | 2026-09-05 | 2026-09-09 | MKH2-02-004-MTS-1050, MKH2-02-004-PRC-1030 | 20d | 0d | JDH4-02-007-PR-1420 | PR-RD |
| MKH2-02-004-PRC-1070 |  | Material Fabrication for Precast Concrete Curb | 30d | 2026-09-10 | 2026-10-15 | MKH2-02-004-PRC-1060 | 23d | 0d | JDH4-02-007-PR-1430 | PR-RD |
| MKH2-02-004-PRC-1080 |  | Material Delivery for Precast Concrete Curb | 30d | 2026-10-17 | 2026-11-19 | MKH2-02-004-PRC-1070 | 23d | 12d | JDH4-02-007-PR-1440 | PR-RD |
|  | 8 | **Interlocking Block Pavers** |  | 2026-09-10 | 2026-11-23 |  |  |  |  |  |
| MKH2-02-004-PRC-1090 |  | PO for Interlocking Block Pavers | 3d | 2026-09-10 | 2026-09-13 | MKH2-02-004-MTS-1070, MKH2-02-004-PRC-1060 | 20d | 0d | JDH4-02-007-PR-1450 | PR-RD |
| MKH2-02-004-PRC-1100 |  | Material Fabrication for Interlocking Block Pavers | 30d | 2026-09-14 | 2026-10-19 | MKH2-02-004-PRC-1090 | 20d | 0d | JDH4-02-007-PR-1460 | PR-RD |
| MKH2-02-004-PRC-1110 |  | Material Delivery for Interlocking Block Pavers | 30d | 2026-10-20 | 2026-11-23 | MKH2-02-004-PRC-1100 | 20d | 9d | JDH4-02-007-PR-1470 | PR-RD |
|  | 9 | **Pavement Markings** |  | 2026-09-14 | 2026-11-16 |  |  |  |  |  |
| MKH2-02-004-PRC-1120 |  | PO for Pavement Markings | 4d | 2026-09-14 | 2026-09-17 | MKH2-02-004-MTS-1090, MKH2-02-004-PRC-1090 | 23d | 0d | JDH4-02-007-PR-1480 | PR-RD |
| MKH2-02-004-PRC-1130 |  | Material Fabrication for Pavement Markings | 25d | 2026-09-19 | 2026-10-18 | MKH2-02-004-PRC-1120 | 26d | 0d | JDH4-02-007-PR-1490 | PR-RD |
| MKH2-02-004-PRC-1140 |  | Material Delivery for Pavement Markings | 25d | 2026-10-19 | 2026-11-16 | MKH2-02-004-PRC-1130 | 26d | 15d | JDH4-02-007-PR-1500 | PR-RD |
|  | 10 | **Traffic Signs** |  | 2026-09-19 | 2026-11-30 |  |  |  |  |  |
| MKH2-02-004-PRC-1150 |  | PO for Traffic Signs | 6d | 2026-09-19 | 2026-09-26 | MKH2-02-004-MTS-1110, MKH2-02-004-PRC-1120 | 23d | 0d | JDH4-02-007-PR-1510 | PR-RD |
| MKH2-02-004-PRC-1160 |  | Material Fabrication for Traffic Signs | 28d | 2026-09-27 | 2026-10-28 | MKH2-02-004-PRC-1150 | 23d | 0d | JDH4-02-007-PR-1520 | PR-RD |
| MKH2-02-004-PRC-1170 |  | Material Delivery for Traffic Signs | 28d | 2026-10-29 | 2026-11-30 | MKH2-02-004-PRC-1160 | 23d | 1d | JDH4-02-007-PR-1530 | PR-RD |
|  | 7 | **Stormwater Utilities** |  | 2026-08-10 | 2026-11-16 |  |  |  |  |  |
|  | 2 | **GRP Pipes** |  | 2026-08-10 | 2026-10-29 |  |  |  |  |  |
| MKH2-02-004-PRC-1180 |  | PO for GRP Pipes | 5d | 2026-08-10 | 2026-08-15 | MKH2-02-004-MTS-1130, MKH2-02-004-SHD-1220 | 0d |  | JDH4-02-007-PR-1660 | PR-SD |
| MKH2-02-004-PRC-1190 |  | Material Fabrication for GRP Pipes | 16d | 2026-08-16 | 2026-09-02 | MKH2-02-004-PRC-1180, MKH2-02-004-SHD-1230, MKH2-02-004-SHD-1090, MKH2-02-004-SHD-1210 | 0d |  | JDH4-02-007-PR-1670 | PR-SD |
| MKH2-02-004-PRC-1200 |  | Material Delivery for GRP Pipes-Stage 1 | 16d | 2026-09-03 | 2026-09-21 | MKH2-02-004-PRC-1190 | 0d |  | JDH4-02-007-PR-1680 | PR-SD |
| MKH2-02-004-PRC-1210 |  | Material Delivery for GRP Pipes-Stage 2 | 16d | 2026-09-22 | 2026-10-11 | MKH2-02-004-PRC-1200 | 0d |  | JDH4-02-007-PR-1681 | PR-SD |
| MKH2-02-004-PRC-1220 |  | Material Delivery for GRP Pipes-Stage 3 | 16d | 2026-10-12 | 2026-10-29 | MKH2-02-004-PRC-1210 | 0d |  | JDH4-02-007-PR-1682 | PR-SD |
|  | 7 | **Catch Basins** |  | 2026-08-10 | 2026-11-16 |  |  |  |  |  |
| MKH2-02-004-PRC-1270 |  | PO for Catch Basins | 4d | 2026-08-10 | 2026-08-13 | MKH2-02-004-MTS-1170 | 27d | 0d | JDH4-02-007-PR-1720 | PR-SD |
| MKH2-02-004-PRC-1280 |  | Material Fabrication for Catch Basins | 20d | 2026-08-15 | 2026-09-06 | MKH2-02-004-PRC-1270 | 27d | 0d | JDH4-02-007-PR-1729 | PR-SD |
| MKH2-02-004-PRC-1290 |  | Material Delivery for Catch Basins-Stage 1 | 20d | 2026-09-07 | 2026-09-30 | MKH2-02-004-PRC-1280 | 27d | 0d | JDH4-02-007-PR-1730 | PR-SD |
| MKH2-02-004-PRC-1300 |  | Material Delivery for Catch Basins-Stage 2 | 20d | 2026-10-01 | 2026-10-24 | MKH2-02-004-PRC-1290 | 29d | 0d | JDH4-02-007-PR-1731 | PR-SD |
| MKH2-02-004-PRC-1310 |  | Material Delivery for Catch Basins-Stage 3 | 20d | 2026-10-25 | 2026-11-16 | MKH2-02-004-PRC-1300 | 29d | 17d | JDH4-02-007-PR-1732 | PR-SD |

| ID | WBS | Activity | Duration | Start | Finish | Predecessors | Total float | Free float | Resources | Cost | HM MAkkah 03 old activity id | Procurement | Construction |
| --- | --- | --- | --- | --- | --- | --- | --- | --- | --- | --- | --- | --- | --- |
|  | 6 | **Inlet Manholes** |  | 2026-08-16 | 2026-10-31 |  |  |  |  |  |  |  |  |
| MKH2-02-004-PRC-1230 |  | PO for Inlet Manholes | 5d | 2026-08-16 | 2026-08-20 | MKH2-02-004-MTS-1150 | 14d | 0d |  |  | JDH4-02-007-PR-1690 | PR-SD |  |
| MKH2-02-004-PRC-1240 |  | Material Fabrication for Inlet Manholes | 20d | 2026-08-22 | 2026-09-13 | MKH2-02-004-PRC-1230 | 14d | 0d |  |  | JDH4-02-007-PR-1700 | PR-SD |  |
| MKH2-02-004-PRC-1250 |  | Material Delivery for Inlet Manholes-Stage 1 | 20d | 2026-09-14 | 2026-10-07 | MKH2-02-004-PRC-1240 | 14d | 0d |  |  | JDH4-02-007-PR-1710 | PR-SD |  |
| MKH2-02-004-PRC-1260 |  | Material Delivery for Inlet Manholes-Stage 2 | 20d | 2026-10-08 | 2026-10-31 | MKH2-02-004-PRC-1250 | 29d | 0d |  |  | JDH4-02-007-PR-1711 | PR-SD |  |
|  | 5 | **Construction** |  | 2026-07-25 | 2027-06-03 |  |  |  |  |  |  |  |  |
|  | 1 | **Roads** |  | 2026-07-25 | 2027-06-03 |  |  |  |  |  |  |  |  |
|  | 3 | **Local 17** |  | 2026-07-25 | 2027-03-01 |  |  |  |  |  |  |  |  |
|  | 1 | **Road Works** |  | 2026-07-25 | 2027-03-01 |  |  |  |  |  |  |  |  |
|  | 1 | **Eartworks & Site grading** |  | 2026-07-25 | 2026-12-01 |  |  |  |  |  |  |  |  |
| MKH2-02-004-CNS-1020 |  | Road excavation [Local 17 ]-Stage 1 | 18d | 2026-07-25 | 2026-08-13 | MKH2-02-004-KM-1020, MKH2-02-004-MST-1030, MKH2-02-004-MOB-1110, MKH2-02-004-MOB-1040, MKH2-02-004-MOB-1070, MKH2-02-004-MOB-1080, MKH2-02-004-MOB-1090, MKH2-02-004-MOB-1100 | 0d |  | Roadway Excavation for cuttings (all types of soil) [34938]; Bulldozer [720 h]; Truck [1440 h]; Labor [2160 h]; Driver [1440 h]; Eq. Operator [720 h] | 768,636 | A 1021 |  | RD |
| MKH2-02-004-CNS-1140 |  | Road backfilling [Local 17 ]-Stage 1 | 18d | 2026-07-25 | 2026-08-13 | MKH2-02-004-CNS-1020 SS | 0d |  | Embankments to the ROW with common / suitable excavated material or with suitable imported material [17582]; Bulldozer [360 h]; Water Tanker [360 h]; Truck [720 h]; Road Roller [360 h]; Bobcat [360 h]; Labor [1080 h]; Driver [1080 h]; Eq. Operator [1080 h] | 281,312 | A 1111 |  | RD |
| MKH2-02-004-CNS-1030 |  | Road excavation [Local 17 ]-Stage 2 | 18d | 2026-08-15 | 2026-09-03 | MKH2-02-004-CNS-1020 | 0d |  | Roadway Excavation for cuttings (all types of soil) [34937]; Excavator [720 h]; Water Tanker [720 h]; Grader [720 h]; Truck [1440 h]; Bobcat [720 h]; Labor [2160 h]; Driver [2160 h]; Eq. Operator [2160 h] | 768,614 | A 1022 |  | RD |
| MKH2-02-004-CNS-1150 |  | Road backfilling [Local 17 ]-Stage 2 | 18d | 2026-08-15 | 2026-09-03 | MKH2-02-004-CNS-1140, MKH2-02-004-CNS-1030 SS | 0d |  | Embankments to the ROW with common / suitable excavated material or with suitable imported material [17582]; Grader [360 h]; Truck [720 h]; Road Roller [360 h]; Compactor [360 h]; Labor [1080 h]; Driver [720 h]; Eq. Operator [1080 h] | 281,312 | A 1112 |  | RD |
| MKH2-02-004-CNS-1260 |  | Subgrade [Local 17 ] | 15d | 2026-10-28 | 2026-11-14 | MKH2-02-004-CNS-2460, MKH2-02-004-CNS-2470, MKH2-02-004-CNS-1150 | 8d | 0d | Subgrade [10735]; Water Tanker [300 h]; Truck [600 h]; Road Roller [300 h]; Labor [600 h]; Driver [900 h]; Eq. Operator [300 h] | 236,170 | A 1200 |  | RD |
| MKH2-02-004-CNS-1340 |  | Aggregate base course [Local 17 ] | 15d | 2026-11-15 | 2026-12-01 | MKH2-02-004-CNS-1260, MKH2-02-004-PRC-1010, MKH2-02-004-PRC-1020 | 13d | 0d | Aggregate base course [7157]; Loader [300 h]; Water Tanker [300 h]; Truck [600 h]; Road Roller [300 h]; Labor [900 h]; Driver [900 h]; Eq. Operator [600 h] | 372,164 | A 1300 |  | RD |
|  | 2 | **Asphalt Works** |  | 2026-12-02 | 2026-12-30 |  |  |  |  |  |  |  |  |
| MKH2-02-004-CNS-1420 |  | Prime Coat (MC1) [Local 17 ] | 10d | 2026-12-02 | 2026-12-13 | MKH2-02-004-CNS-1340, MKH2-02-004-PRC-1170, MKH2-02-004-PRC-1050 | 22d | 0d | Bituminous base course (Grading I - Class A), including Prime Coat (MC1) [251]; Water Tanker [100 h]; Truck [100 h]; Road Roller [100 h]; Asphalte Paver [100 h]; Labor [200 h]; Driver [200 h]; Eq. Operator [200 h] | 140,560 | A 1410 |  | RD |
| MKH2-02-004-CNS-1500 |  | Bituminous base course [Local 17 ] | 15d | 2026-12-14 | 2026-12-30 | MKH2-02-004-CNS-1420, MKH2-02-004-PRC-1050 | 22d | 0d | Bituminous base course (Grading I - Class A), including Prime Coat (MC1) [2255]; Truck [300 h]; Road Roller [150 h]; Asphalte Paver [150 h]; Labor [600 h]; Driver [300 h]; Eq. Operator [300 h] | 1,262,800 | A 1500 |  | RD |
|  | 3 | **Finishing Works** |  | 2026-12-31 | 2027-03-01 |  |  |  |  |  |  |  |  |
|  | 1 | **Precast Concrete Curb** |  | 2026-12-31 | 2027-01-13 |  |  |  |  |  |  |  |  |
| MKH2-02-004-CNS-1580 |  | Installation of Precast Concrete curb [Local 17 ] | 12d | 2026-12-31 | 2027-01-13 | MKH2-02-004-CNS-1500, MKH2-02-004-PRC-1080 | 22d | 0d | Precast Concrete Kerb, Type K1-B [6961]; Labor [1080 h]; Skilled Labor [720 h] | 415,849.46 | A 1640 |  | RD |
|  | 2 | **Precast Interlocking block pavers** |  | 2027-01-14 | 2027-01-26 |  |  |  |  |  |  |  |  |
| MKH2-02-004-CNS-1660 |  | Installation of Interlocking block pavers for sidewalk/footpath [Local 17 ] | 11d | 2027-01-14 | 2027-01-26 | MKH2-02-004-CNS-1580, MKH2-02-004-PRC-1110 | 22d | 0d | 60mm thick - Interlocking block pavers for sidewalk/footpath [7988]; Road Roller [330 h]; Compactor [330 h]; Labor [990 h]; Eq. Operator [660 h]; Mason [1980 h] | 559,160 | A 1740 |  | RD |

| ID | WBS | Activity | Duration | Start | Finish | Predecessors | Total float | Free float | Resources | Cost | HM MAkkah 03 old activity id | Construction |
| --- | --- | --- | --- | --- | --- | --- | --- | --- | --- | --- | --- | --- |
|  | 3 | **Pavement Markings** |  | 2027-01-27 | 2027-02-14 |  |  |  |  |  |  |  |
| MKH2-02-004-CNS-1740 |  | Pavement markings [Local 17 ] | 8d | 2027-01-27 | 2027-02-04 | MKH2-02-004-CNS-1660, MKH2-02-004-PRC-1140 | 22d | 0d | Retroreflective Thermoplastic White Traffic lines [1550]; Labor [160 h]; Skilled Labor [160 h] | 69,750 | A 1860 | RD |
| MKH2-02-004-CNS-1820 |  | (Speed Hump) with retroreflectiveThermoplastic yellow [Local 17 ] | 8d | 2027-02-06 | 2027-02-14 | MKH2-02-004-CNS-1740 | 22d | 0d | (Speed Hump) with retroreflectiveThermoplastic yellow [5]; Labor [240 h]; Skilled Labor [160 h] | 60,000 | A 1950 | RD |
|  | 4 | **Traffic Signage** |  | 2027-02-15 | 2027-03-01 |  |  |  |  |  |  |  |
| MKH2-02-004-CNS-1900 |  | Installation of Traffic Signs [Local 17 ] | 12d | 2027-02-15 | 2027-03-01 | MKH2-02-004-CNS-1820, MKH2-02-004-PRC-1170 | 22d | 8d | Traffic signs, ground mounted, Sheet Alumenium, (breakaway)Single post, with all accessories [49]; Labor [360 h]; Skilled Labor [240 h] | 88,200 | A 2050 | RD |
|  | 2 | **Storm Water Drainage** |  | 2026-08-15 | 2027-01-02 |  |  |  |  |  |  |  |
|  | 1 | **Pipe Works** |  | 2026-08-15 | 2026-10-27 |  |  |  |  |  |  |  |
| MKH2-02-004-CNS-1980 |  | Excavation & Compaction (FDT) [Local 17 ]-Stage 1 | 13d | 2026-08-15 | 2026-08-29 | MKH2-02-004-CNS-1140 | 8d | 0d | Depth: 0.0m - 1.5m [642]; Excavator [390 h]; Water Tanker [390 h]; Truck [780 h]; Bobcat [390 h]; Compactor [390 h]; Labor [1170 h]; Driver [1170 h]; Eq. Operator [1170 h] | 68,472.02 | A 2551 | SD |
| MKH2-02-004-CNS-1990 |  | Excavation & Compaction (FDT) [Local 17 ]-Stage 2 | 13d | 2026-08-30 | 2026-09-13 | MKH2-02-004-CNS-1980, MKH2-02-004-CNS-1150 FF | 9d | 0d | Depth: 0.0m - 1.5m [641]; Truck [780 h]; Labor [1170 h]; Driver [780 h] | 68,365.36 | A 2552 | SD |
| MKH2-02-004-CNS-2100 |  | Sand Bedding [Local 17 ]-Stage 1 | 8d | 2026-08-30 | 2026-09-07 | MKH2-02-004-CNS-1980 | 8d | 0d | Depth: 1.51m - 2.5m [642]; Loader [160 h]; Truck [160 h]; Labor [320 h]; Driver [160 h]; Eq. Operator [160 h] | 68,472.02 | A 2641 | SD |
| MKH2-02-004-CNS-2220 |  | Installation of GRP Pipe [Local 17 ]-Stage 1 | 14d | 2026-09-08 | 2026-09-24 | MKH2-02-004-CNS-2100, MKH2-02-004-PRC-1200 SS | 8d | 0d | Depth: more than 2.5m [642]; Labor [280 h]; Plumber [140 h] | 342,360.09 | A 2731 | SD |
| MKH2-02-004-CNS-2110 |  | Sand Bedding [Local 17 ]-Stage 2 | 8d | 2026-09-14 | 2026-09-22 | MKH2-02-004-CNS-2100, MKH2-02-004-CNS-1990 | 9d | 1d | Depth: 1.51m - 2.5m [641]; Loader [160 h]; Truck [160 h]; Labor [320 h]; Driver [160 h]; Eq. Operator [160 h] | 68,365.36 | A 2642 | SD |
| MKH2-02-004-CNS-2230 |  | Installation of GRP Pipe [Local 17 ]-Stage 2 | 14d | 2026-09-26 | 2026-10-11 | MKH2-02-004-CNS-2220, MKH2-02-004-CNS-2110 | 8d | 0d | Depth: more than 2.5m [641]; Crane [140 h]; Labor [280 h]; Eq. Operator [140 h]; Plumber [140 h] | 341,826.82 | A 2732 | SD |
| MKH2-02-004-CNS-2340 |  | Sand Cover & Warning Tape [Local 17 ]-Stage 1 | 7d | 2026-09-26 | 2026-10-03 | MKH2-02-004-CNS-2220 | 15d | 0d | Depth: 1.51m - 2.5m [642]; Loader [70 h]; Labor [140 h]; Skilled Labor [70 h]; Eq. Operator [70 h] | 136,944.04 | A 2821 | SD |
| MKH2-02-004-CNS-2460 |  | Backfilling & Compaction [Local 17 ]-Stage 1 | 7d | 2026-10-04 | 2026-10-11 | MKH2-02-004-CNS-2340 | 15d | 7d | Depth: > 3.5m [642]; Water Tanker [70 h]; Truck [70 h]; Compactor [70 h]; Labor [140 h]; Driver [140 h]; Eq. Operator [70 h] | 68,472.02 | A 2911 | SD |
| MKH2-02-004-CNS-2350 |  | Sand Cover & Warning Tape [Local 17 ]-Stage 2 | 7d | 2026-10-12 | 2026-10-19 | MKH2-02-004-CNS-2340, MKH2-02-004-CNS-2230 | 8d | 0d | Depth: 1.51m - 2.5m [641]; Loader [70 h]; Labor [140 h]; Skilled Labor [70 h]; Eq. Operator [70 h] | 136,730.73 | A 2822 | SD |
| MKH2-02-004-CNS-2470 |  | Backfilling & Compaction [Local 17 ]-Stage 2 | 7d | 2026-10-20 | 2026-10-27 | MKH2-02-004-CNS-2460, MKH2-02-004-CNS-2350 | 8d | 0d | Depth: > 3.5m [641]; Bulldozer [70 h]; Truck [70 h]; Labor [140 h]; Driver [70 h]; Eq. Operator [70 h] | 68,365.36 | A 2912 | SD |
|  | 2 | **Manholes** |  | 2026-10-08 | 2026-11-17 |  |  |  |  |  |  |  |
| MKH2-02-004-CNS-2600 |  | Installation of Manholes [Local 17 ]-Stage 1-[MH 01 to MH 07] | 7d | 2026-10-08 | 2026-10-15 | MKH2-02-004-PRC-1250, MKH2-02-004-CNS-2220 | 14d | 0d | MH depth more than 2.5 m [7]; Excavator [140 h]; Labor [280 h]; Skilled Labor [140 h]; Eq. Operator [140 h] | 165,034.72 | A 3171 | SD |
| MKH2-02-004-CNS-2610 |  | Installation of Manholes [Local 17 ]-Stage 2-[MH 08 to MH 14] | 7d | 2026-10-17 | 2026-10-24 | MKH2-02-004-CNS-2600 | 28d | 0d | MH depth more than 2.5 m [7]; Crane [140 h]; Labor [280 h]; Skilled Labor [140 h]; Eq. Operator [140 h] | 165,034.72 | A 3172 | SD |
| MKH2-02-004-CNS-2620 |  | Installation of Manholes [Local 17 ]-Stage 3-[MH 15 to MH 21] | 7d | 2026-10-25 | 2026-11-01 | MKH2-02-004-CNS-2610 | 28d | 0d | MH depth more than 2.5 m [7]; Excavator [140 h]; Labor [280 h]; Skilled Labor [140 h]; Eq. Operator [140 h] | 165,034.72 | A 3173 | SD |
| MKH2-02-004-CNS-2630 |  | Installation of Manholes [Local 17 ]-Stage 4-[MH 22 to MH 28] | 7d | 2026-11-02 | 2026-11-09 | MKH2-02-004-CNS-2620 | 28d | 0d | MH depth more than 2.5 m [7]; Excavator [140 h]; Crane [140 h]; Labor [280 h]; Skilled Labor [140 h]; Eq. Operator [280 h] | 165,034.72 | A 3174 | SD |
| MKH2-02-004-CNS-2640 |  | Installation of Manholes [Local 17 ]-Stage 5-[MH 29 to MH 33] | 7d | 2026-11-10 | 2026-11-17 | MKH2-02-004-CNS-2630 | 28d | 14d | MH depth more than 2.5 m [5]; Labor [280 h]; Skilled Labor [140 h] | 117,881.94 | A 3175 | SD |
|  | 3 | **Catch Basins** |  | 2026-10-17 | 2027-01-02 |  |  |  |  |  |  |  |
| MKH2-02-004-CNS-2800 |  | Construction of Catch basins [Local 17 ]-Stage 1-[01 to 10] | 7d | 2026-10-17 | 2026-10-24 | MKH2-02-004-PRC-1290, MKH2-02-004-CNS-2220, MKH2-02-004-CNS-2600 | 14d | 0d | Single Catch basin [10]; Excavator [140 h]; Labor [280 h]; Eq. Operator [140 h]; Mason [140 h] | 73,606.81 | A 3291 | SD |
| MKH2-02-004-CNS-2810 |  | Construction of Catch basins [Local 17 ]-Stage 2-[11 to 20] | 7d | 2026-10-25 | 2026-11-01 | MKH2-02-004-CNS-2800 | 25d | 0d | Single Catch basin [10]; Excavator [140 h]; Labor [280 h]; Eq. Operator [140 h]; Mason [140 h] | 73,606.81 | A 3292 | SD |
| MKH2-02-004-CNS-2820 |  | Construction of Catch basins [Local 17 ]-Stage 3-[21 to 30] | 7d | 2026-11-02 | 2026-11-09 | MKH2-02-004-CNS-2810 | 25d | 0d | Single Catch basin [10]; Labor [280 h]; Mason [140 h] | 73,606.81 | A 3293 | SD |
| MKH2-02-004-CNS-2830 |  | Construction of Catch basins [Local 17 ]-Stage 4-[31 to 40] | 7d | 2026-11-10 | 2026-11-17 | MKH2-02-004-CNS-2820 | 25d | 0d | Single Catch basin [10]; Excavator [140 h]; Labor [280 h]; Eq. Operator [140 h]; Mason [140 h] | 73,606.81 | A 3294 | SD |
| MKH2-02-004-CNS-2840 |  | Construction of Catch basins [Local 17 ]-Stage 5-[41 to 50] | 7d | 2026-11-18 | 2026-11-25 | MKH2-02-004-CNS-2830 | 25d | 0d | Single Catch basin [10]; Excavator [140 h]; Labor [280 h]; Eq. Operator [140 h]; Mason [140 h] | 73,606.81 | A 3295 | SD |
| MKH2-02-004-CNS-2850 |  | Construction of Catch basins [Local 17 ]-Stage 6-[51 to 60] | 7d | 2026-11-26 | 2026-12-03 | MKH2-02-004-CNS-2840 | 25d | 0d | Single Catch basin [10]; Labor [280 h]; Mason [140 h] | 73,606.81 | A 3296 | SD |
| MKH2-02-004-CNS-2860 |  | Construction of Catch basins [Local 17 ]-Stage 7-[61 to 70] | 7d | 2026-12-05 | 2026-12-12 | MKH2-02-004-CNS-2850 | 25d | 0d | Single Catch basin [10]; Excavator [140 h]; Labor [280 h]; Eq. Operator [140 h]; Mason [140 h] | 73,606.81 | A 3297 | SD |
| MKH2-02-004-CNS-2870 |  | Construction of Catch basins [Local 17 ]-Stage 8-[71 to 80] | 7d | 2026-12-13 | 2026-12-20 | MKH2-02-004-CNS-2860 | 25d | 0d | Single Catch basin [10]; Excavator [140 h]; Labor [280 h]; Eq. Operator [140 h]; Mason [140 h] | 73,606.81 | A 3298 | SD |
| MKH2-02-004-CNS-2880 |  | Construction of Catch basins [Local 17 ]-Stage 9-[81 to 90] | 7d | 2026-12-21 | 2026-12-28 | MKH2-02-004-CNS-2870 | 25d | 0d | Single Catch basin [10]; Labor [280 h]; Mason [140 h] | 73,606.81 | A 3299 | SD |
| MKH2-02-004-CNS-2890 |  | Construction of Catch basins [Local 17 ]-Stage 10-[91 to 96] | 4d | 2026-12-29 | 2027-01-02 | MKH2-02-004-CNS-2880 | 25d | 3d | Single Catch basin [6]; Excavator [80 h]; Labor [160 h]; Eq. Operator [80 h]; Mason [80 h] | 44,164.09 | A 32999 | SD |

| ID | WBS | Activity | Duration | Start | Finish | Predecessors | Total float | Free float | Resources | Cost | HM MAkkah 03 old activity id | Construction |
| --- | --- | --- | --- | --- | --- | --- | --- | --- | --- | --- | --- | --- |
|  | 4 | **Concrete chambers Pipes** |  | 2026-10-25 | 2026-12-15 |  |  |  |  |  |  |  |
| MKH2-02-004-CNS-3140 |  | Excavation and Compaction (FDT) [Local 17 ]-Stage 1 | 11d | 2026-10-25 | 2026-11-05 | MKH2-02-004-CNS-2800 | 14d | 0d | 300mm Diameter [889]; Excavator [220 h]; Water Tanker [220 h]; Truck [220 h]; Compactor [220 h]; Labor [440 h]; Driver [440 h]; Eq. Operator [440 h] | 74,290.87 | A 3411 | SD |
| MKH2-02-004-CNS-3150 |  | Excavation and Compaction (FDT) [Local 17 ]-Stage 2 | 11d | 2026-11-07 | 2026-11-18 | MKH2-02-004-CNS-3140 | 15d | 1d | 300mm Diameter [888]; Excavator [220 h]; Truck [220 h]; Labor [440 h]; Driver [220 h]; Eq. Operator [220 h] | 74,207.3 | A 3412 | SD |
| MKH2-02-004-CNS-3230 |  | Installation of Pipes [Local 17 ]-Stage 1 | 12d | 2026-11-07 | 2026-11-19 | MKH2-02-004-CNS-3140 | 14d | 0d | 400mm Diameter [889]; Loader [240 h]; Truck [240 h]; Crane [240 h]; Labor [480 h]; Driver [240 h]; Eq. Operator [480 h]; Plumber [240 h] | 222,872.59 | A 3501 | SD |
| MKH2-02-004-CNS-3240 |  | Installation of Pipes [Local 17 ]-Stage 2 | 12d | 2026-11-21 | 2026-12-03 | MKH2-02-004-CNS-3230, MKH2-02-004-CNS-3150 | 14d | 0d | 400mm Diameter [888]; Loader [240 h]; Truck [240 h]; Labor [480 h]; Driver [240 h]; Eq. Operator [240 h]; Plumber [240 h] | 222,621.89 | A 3502 | SD |
| MKH2-02-004-CNS-3320 |  | Backfilling & Compaction [Local 17 ]-Stage 1 | 10d | 2026-11-21 | 2026-12-01 | MKH2-02-004-CNS-3230 | 16d | 2d | 300mm Diameter [889]; Labor [400 h]; Plumber [200 h] | 74,290.87 | A 3591 | SD |
| MKH2-02-004-CNS-3330 |  | Backfilling & Compaction [Local 17 ]-Stage 2 | 10d | 2026-12-05 | 2026-12-15 | MKH2-02-004-CNS-3320, MKH2-02-004-CNS-3240, MKH2-02-004-CNS-2640 | 14d | 2d | 300mm Diameter [888]; Labor [400 h]; Plumber [200 h] | 74,207.3 | A 3592 | SD |
|  | 5 | **Local 11** |  | 2026-09-05 | 2027-02-28 |  |  |  |  |  |  |  |
|  | 1 | **Road Works** |  | 2026-09-05 | 2027-02-28 |  |  |  |  |  |  |  |
|  | 1 | **Eartworks & Site grading** |  | 2026-09-05 | 2026-12-14 |  |  |  |  |  |  |  |
| MKH2-02-004-CNS-1060 |  | Road excavation [Local 11 ]-Stage 1 | 11d | 2026-09-05 | 2026-09-16 | MKH2-02-004-CNS-1150 | 0d |  | Roadway Excavation for cuttings (all types of soil) [21755]; Excavator [440 h]; Bulldozer [440 h]; Grader [440 h]; Truck [880 h]; Bobcat [440 h]; Labor [1320 h]; Driver [880 h]; Eq. Operator [1760 h] | 478,610 | A 1041 | RD |
| MKH2-02-004-CNS-1180 |  | Road backfilling [Local 11 ]-Stage 1 | 11d | 2026-09-05 | 2026-09-16 | MKH2-02-004-CNS-1060 SS | 0d |  | Embankments to the ROW with common / suitable excavated material or with suitable imported material [10948]; Bulldozer [220 h]; Water Tanker [220 h]; Grader [220 h]; Truck [440 h]; Road Roller [220 h]; Bobcat [220 h]; Labor [660 h]; Driver [660 h]; Eq. Operator [880 h] | 175,168 | A 1131 | RD |
| MKH2-02-004-CNS-1070 |  | Road excavation [Local 11 ]-Stage 2 | 11d | 2026-09-17 | 2026-09-30 | MKH2-02-004-CNS-1060 | 0d |  | Roadway Excavation for cuttings (all types of soil) [21755]; Excavator [440 h]; Water Tanker [440 h]; Truck [880 h]; Bobcat [440 h]; Labor [1320 h]; Driver [1320 h]; Eq. Operator [880 h] | 478,610 | A 1042 | RD |
| MKH2-02-004-CNS-1190 |  | Road backfilling [Local 11 ]-Stage 2 | 11d | 2026-09-17 | 2026-09-30 | MKH2-02-004-CNS-1180, MKH2-02-004-CNS-1070 SS | 0d |  | Embankments to the ROW with common / suitable excavated material or with suitable imported material [10948]; Truck [440 h]; Road Roller [220 h]; Compactor [220 h]; Labor [660 h]; Driver [440 h]; Eq. Operator [440 h] | 175,168 | A 1132 | RD |
| MKH2-02-004-CNS-1280 |  | Subgrade [Local 11 ] | 9d | 2026-11-24 | 2026-12-03 | MKH2-02-004-CNS-2500, MKH2-02-004-CNS-1190, MKH2-02-004-CNS-2510, MKH2-02-004-CNS-1260 | 0d |  | Subgrade [6684]; Water Tanker [180 h]; Grader [180 h]; Truck [360 h]; Road Roller [180 h]; Bobcat [180 h]; Compactor [180 h]; Labor [360 h]; Driver [540 h]; Eq. Operator [720 h] | 147,048 | A 1220 | RD |
| MKH2-02-004-CNS-1360 |  | Aggregate base course [Local 11 ] | 9d | 2026-12-05 | 2026-12-14 | MKH2-02-004-CNS-1280, MKH2-02-004-PRC-1010, MKH2-02-004-PRC-1020, MKH2-02-004-CNS-1340, MKH2-02-004-PRC-1140, MKH2-02-004-PRC-1110, MKH2-02-004-PRC-1080 | 11d | 0d | Aggregate base course [4456]; Loader [180 h]; Water Tanker [180 h]; Grader [180 h]; Truck [360 h]; Road Roller [180 h]; Labor [540 h]; Driver [540 h]; Eq. Operator [540 h] | 231,712 | A 1320 | RD |
|  | 2 | **Asphalt Works** |  | 2026-12-15 | 2027-01-09 |  |  |  |  |  |  |  |
| MKH2-02-004-CNS-1440 |  | Prime Coat (MC1) [Local 11 ] | 10d | 2026-12-15 | 2026-12-26 | MKH2-02-004-CNS-1360, MKH2-02-004-CNS-1420 | 23d | 0d | Bituminous base course (Grading I - Class A), including Prime Coat (MC1) [156]; Water Tanker [100 h]; Truck [100 h]; Road Roller [100 h]; Labor [200 h]; Driver [200 h]; Eq. Operator [100 h] | 87,360 | A 1430 | RD |
| MKH2-02-004-CNS-1520 |  | Bituminous base course [Local 11 ] | 12d | 2026-12-27 | 2027-01-09 | MKH2-02-004-CNS-1440, MKH2-02-004-MST-1050, MKH2-02-004-PRC-1050, MKH2-02-004-PRC-1300 | 23d | 0d | Bituminous base course (Grading I - Class A), including Prime Coat (MC1) [1404]; Truck [240 h]; Road Roller [120 h]; Asphalte Paver [120 h]; Labor [480 h]; Driver [240 h]; Eq. Operator [240 h] | 786,240 | A 1520 | RD |
|  | 3 | **Finishing Works** |  | 2027-01-10 | 2027-02-28 |  |  |  |  |  |  |  |
|  | 1 | **Precast Concrete Curb** |  | 2027-01-10 | 2027-01-21 |  |  |  |  |  |  |  |
| MKH2-02-004-CNS-1600 |  | Installation of Precast Concrete curb [Local 11 ] | 11d | 2027-01-10 | 2027-01-21 | MKH2-02-004-CNS-1520, MKH2-02-004-PRC-1080 | 23d | 0d | Precast Concrete Kerb, Type K1-A [4335]; Labor [660 h]; Skilled Labor [440 h] | 258,972.48 | A 1660 | RD |
|  | 2 | **Precast Interlocking block pavers** |  | 2027-01-23 | 2027-02-02 |  |  |  |  |  |  |  |
| MKH2-02-004-CNS-1680 |  | Installation of Interlocking block pavers for sidewalk/footpath [Local 11 ] | 10d | 2027-01-23 | 2027-02-02 | MKH2-02-004-CNS-1600, MKH2-02-004-PRC-1110, MKH2-02-004-CNS-1520 | 23d | 0d | 60mm thick - Interlocking block pavers for sidewalk/footpath [4974]; Road Roller [200 h]; Compactor [200 h]; Labor [600 h]; Eq. Operator [400 h]; Mason [1200 h] | 348,180 | A 1760 | RD |

| ID | WBS | Activity | Duration | Start | Finish | Predecessors | Total float | Free float | Resources | Cost | HM MAkkah 03 old activity id | Construction |
| --- | --- | --- | --- | --- | --- | --- | --- | --- | --- | --- | --- | --- |
|  | 3 | **Pavement Markings** |  | 2027-02-03 | 2027-02-18 |  |  |  |  |  |  |  |
| MKH2-02-004-CNS-1760 |  | Pavement markings [Local 11 ] | 7d | 2027-02-03 | 2027-02-10 | MKH2-02-004-CNS-1680, MKH2-02-004-PRC-1140, MKH2-02-004-CNS-1520 | 23d | 0d | Retroreflective Thermoplastic White Traffic lines [965]; Labor [140 h]; Skilled Labor [140 h] | 43,425 | A 1880 | RD |
| MKH2-02-004-CNS-1840 |  | (Speed Hump) with retroreflectiveThermoplastic yellow [Local 11 ] | 7d | 2027-02-11 | 2027-02-18 | MKH2-02-004-CNS-1760 | 23d | 0d | (Speed Hump) with retroreflectiveThermoplastic yellow [3]; Labor [210 h]; Skilled Labor [140 h] | 36,000 | A 1970 | RD |
|  | 4 | **Traffic Signage** |  | 2027-02-20 | 2027-02-28 |  |  |  |  |  |  |  |
| MKH2-02-004-CNS-1920 |  | Installation of Traffic Signs [Local 11 ] | 7d | 2027-02-20 | 2027-02-28 | MKH2-02-004-CNS-1840, MKH2-02-004-PRC-1170, MKH2-02-004-CNS-1520 | 23d | 9d | Traffic signs, ground mounted, Sheet Alumenium, (breakaway)Single post, with all accessories [30]; Labor [210 h]; Skilled Labor [140 h] | 54,000 | A 2070 | RD |
|  | 2 | **Storm Water Drainage** |  | 2026-10-01 | 2026-12-19 |  |  |  |  |  |  |  |
|  | 1 | **Pipe Works** |  | 2026-10-01 | 2026-11-23 |  |  |  |  |  |  |  |
| MKH2-02-004-CNS-2020 |  | Excavation & Compaction (FDT) [Local 11 ]-Stage 1 | 8d | 2026-10-01 | 2026-10-10 | MKH2-02-004-CNS-1190 | 0d |  | Depth: 0.0m - 1.5m [427]; Water Tanker [240 h]; Truck [480 h]; Bobcat [240 h]; Compactor [240 h]; Labor [720 h]; Driver [720 h]; Eq. Operator [480 h] | 45,541.36 | A 2571 | SD |
| MKH2-02-004-CNS-2030 |  | Excavation & Compaction (FDT) [Local 11 ]-Stage 2 | 8d | 2026-10-11 | 2026-10-19 | MKH2-02-004-CNS-2020 | 3d | 0d | Depth: 0.0m - 1.5m [426]; Excavator [240 h]; Truck [480 h]; Labor [720 h]; Driver [480 h]; Eq. Operator [240 h] | 45,434.7 | A 2572 | SD |
| MKH2-02-004-CNS-2140 |  | Sand Bedding [Local 11 ]-Stage 1 | 6d | 2026-10-11 | 2026-10-17 | MKH2-02-004-CNS-2020 | 0d |  | Depth: 1.51m - 2.5m [427]; Loader [120 h]; Truck [120 h]; Labor [240 h]; Driver [120 h]; Eq. Operator [120 h] | 45,541.36 | A 2661 | SD |
| MKH2-02-004-CNS-2260 |  | Installation of GRP Pipe [Local 11 ]-Stage 1 | 11d | 2026-10-18 | 2026-10-29 | MKH2-02-004-CNS-2140, MKH2-02-004-PRC-1210 | 0d |  | Depth: 1.51m - 2.5m [427]; Labor [220 h]; Plumber [110 h] | 227,706.79 | A 2751 | SD |
| MKH2-02-004-CNS-2150 |  | Sand Bedding [Local 11 ]-Stage 2 | 6d | 2026-10-20 | 2026-10-26 | MKH2-02-004-CNS-2140, MKH2-02-004-CNS-2030 | 3d |  | Depth: 1.51m - 2.5m [426]; Loader [120 h]; Truck [120 h]; Labor [240 h]; Driver [120 h]; Eq. Operator [120 h] | 45,434.7 | A 2662 | SD |
| MKH2-02-004-CNS-2270 |  | Installation of GRP Pipe [Local 11 ]-Stage 2 | 11d | 2026-10-31 | 2026-11-11 | MKH2-02-004-CNS-2260, MKH2-02-004-CNS-2150, MKH2-02-004-PRC-1220 | 0d |  | Depth: 1.51m - 2.5m [426]; Crane [110 h]; Labor [220 h]; Eq. Operator [110 h]; Plumber [110 h] | 227,173.52 | A 2752 | SD |
| MKH2-02-004-CNS-2380 |  | Sand Cover & Warning Tape [Local 11 ]-Stage 1 | 5d | 2026-10-31 | 2026-11-04 | MKH2-02-004-CNS-2260 | 6d | 0d | Depth: 0.0m - 1.5m [427]; Loader [50 h]; Labor [100 h]; Skilled Labor [50 h]; Eq. Operator [50 h] | 91,082.72 | A 2841 | SD |
| MKH2-02-004-CNS-2500 |  | Backfilling & Compaction [Local 11 ]-Stage 1 | 5d | 2026-11-05 | 2026-11-10 | MKH2-02-004-CNS-2380 | 6d |  | Depth: 2.51m - 3.5m [427]; Bulldozer [50 h]; Water Tanker [50 h]; Truck [50 h]; Compactor [50 h]; Labor [100 h]; Driver [100 h]; Eq. Operator [100 h] | 45,541.36 | A 2931 | SD |
| MKH2-02-004-CNS-2390 |  | Sand Cover & Warning Tape [Local 11 ]-Stage 2 | 5d | 2026-11-12 | 2026-11-17 | MKH2-02-004-CNS-2380, MKH2-02-004-CNS-2270 | 0d |  | Depth: 0.0m - 1.5m [426]; Loader [50 h]; Labor [100 h]; Skilled Labor [50 h]; Eq. Operator [50 h] | 90,869.41 | A 2842 | SD |
| MKH2-02-004-CNS-2510 |  | Backfilling & Compaction [Local 11 ]-Stage 2 | 5d | 2026-11-18 | 2026-11-23 | MKH2-02-004-CNS-2500, MKH2-02-004-CNS-2390 | 0d |  | Depth: 2.51m - 3.5m [426]; Bulldozer [50 h]; Truck [50 h]; Labor [100 h]; Driver [50 h]; Eq. Operator [50 h] | 45,434.7 | A 2932 | SD |
|  | 2 | **Manholes** |  | 2026-11-01 | 2026-11-24 |  |  |  |  |  |  |  |
| MKH2-02-004-CNS-2680 |  | Installation of Manholes [Local 11 ]-Stage 1-[MH 01 to MH 07] | 7d | 2026-11-01 | 2026-11-08 | MKH2-02-004-CNS-2260, MKH2-02-004-PRC-1260 | 30d | 0d | MH depth 1.51 - 2.5m [7]; Excavator [140 h]; Labor [280 h]; Skilled Labor [140 h]; Eq. Operator [140 h] | 165,034.72 | A 3191 | SD |
| MKH2-02-004-CNS-2690 |  | Installation of Manholes [Local 11 ]-Stage 2-[MH 08 to MH 14] | 7d | 2026-11-09 | 2026-11-16 | MKH2-02-004-CNS-2680 | 33d | 0d | MH depth 1.51 - 2.5m [7]; Excavator [140 h]; Crane [140 h]; Labor [280 h]; Skilled Labor [140 h]; Eq. Operator [280 h] | 165,034.72 | A 3192 | SD |
| MKH2-02-004-CNS-2700 |  | Installation of Manholes [Local 11 ]-Stage 3-[MH 15 to MH 20] | 7d | 2026-11-17 | 2026-11-24 | MKH2-02-004-CNS-2690 | 33d | 0d | MH depth 1.51 - 2.5m [6]; Labor [280 h]; Skilled Labor [140 h] | 141,458.33 | A 3193 | SD |
|  | 3 | **Catch Basins** |  | 2026-11-09 | 2026-12-19 |  |  |  |  |  |  |  |
| MKH2-02-004-CNS-2950 |  | Construction of Catch basins [Local 11 ]-Stage 1-[01 to 10] | 7d | 2026-11-09 | 2026-11-16 | MKH2-02-004-CNS-2680 | 30d | 0d | Single Catch basin [10]; Excavator [140 h]; Labor [280 h]; Eq. Operator [140 h]; Mason [140 h] | 73,606.81 | A 3311 | SD |
| MKH2-02-004-CNS-2960 |  | Construction of Catch basins [Local 11 ]-Stage 2-[11 to 20] | 7d | 2026-11-17 | 2026-11-24 | MKH2-02-004-CNS-2950 | 33d | 0d | Single Catch basin [10]; Excavator [140 h]; Labor [280 h]; Eq. Operator [140 h]; Mason [140 h] | 73,606.81 | A 3312 | SD |
| MKH2-02-004-CNS-2970 |  | Construction of Catch basins [Local 11 ]-Stage 3-[21 to 30] | 7d | 2026-11-25 | 2026-12-02 | MKH2-02-004-CNS-2960, MKH2-02-004-CNS-2700 | 33d | 0d | Single Catch basin [10]; Excavator [140 h]; Labor [280 h]; Eq. Operator [140 h]; Mason [140 h] | 73,606.81 | A 3313 | SD |
| MKH2-02-004-CNS-2980 |  | Construction of Catch basins [Local 11 ]-Stage 4-[31 to 40] | 7d | 2026-12-03 | 2026-12-10 | MKH2-02-004-CNS-2970 | 33d | 0d | Single Catch basin [10]; Excavator [140 h]; Labor [280 h]; Eq. Operator [140 h]; Mason [140 h] | 73,606.81 | A 3314 | SD |
| MKH2-02-004-CNS-2990 |  | Construction of Catch basins [Local 11 ]-Stage 5-[41 to 50] | 7d | 2026-12-12 | 2026-12-19 | MKH2-02-004-CNS-2980 | 33d | 10d | Single Catch basin [10]; Excavator [140 h]; Labor [280 h]; Eq. Operator [140 h]; Mason [140 h] | 73,606.81 | A 3315 | SD |

| ID | WBS | Activity | Duration | Start | Finish | Predecessors | Total float | Free float | Resources | Cost | HM MAkkah 03 old activity id | Construction |
| --- | --- | --- | --- | --- | --- | --- | --- | --- | --- | --- | --- | --- |
|  | 4 | **Concrete chambers Pipes** |  | 2026-11-17 | 2026-12-15 |  |  |  |  |  |  |  |
| MKH2-02-004-CNS-3170 |  | Excavation and Compaction (FDT) [Local 11 ] | 9d | 2026-11-17 | 2026-11-26 | MKH2-02-004-CNS-2950 | 30d | 0d | 300mm Diameter [1050]; Excavator [180 h]; Truck [180 h]; Labor [360 h]; Driver [180 h]; Eq. Operator [180 h] | 87,745.12 | A 3430 | SD |
| MKH2-02-004-CNS-3260 |  | Installation of Pipes [Local 11 ] | 7d | 2026-11-28 | 2026-12-05 | MKH2-02-004-CNS-3170 | 30d | 0d | 400mm Diameter [1050]; Loader [140 h]; Truck [140 h]; Crane [140 h]; Labor [280 h]; Driver [140 h]; Eq. Operator [280 h]; Plumber [140 h] | 263,235.35 | A 3520 | SD |
| MKH2-02-004-CNS-3350 |  | Backfilling & Compaction [Local 11 ] | 9d | 2026-12-06 | 2026-12-15 | MKH2-02-004-CNS-3260, MKH2-02-004-CNS-2700 | 30d | 18d | 300mm Diameter [1050]; Labor [360 h]; Plumber [180 h] | 87,745.12 | A 3610 | SD |
|  | 6 | **Local 29** |  | 2026-10-01 | 2027-03-03 |  |  |  |  |  |  |  |
|  | 1 | **Road Works** |  | 2026-10-01 | 2027-03-03 |  |  |  |  |  |  |  |
|  | 1 | **Eartworks & Site grading** |  | 2026-10-01 | 2027-01-05 |  |  |  |  |  |  |  |
| MKH2-02-004-CNS-1080 |  | Road excavation [Local 29 ] | 10d | 2026-10-01 | 2026-10-12 | MKH2-02-004-CNS-1190 | 3d | 0d | Roadway Excavation for cuttings (all types of soil) [23904]; Bulldozer [500 h]; Water Tanker [500 h]; Truck [1000 h]; Labor [1500 h]; Driver [1500 h]; Eq. Operator [500 h] | 525,888 | A 1050 | RD |
| MKH2-02-004-CNS-1200 |  | Road backfilling [Local 29 ] | 10d | 2026-10-01 | 2026-10-12 | MKH2-02-004-CNS-1080 SS | 3d | 0d | Embankments to the ROW with common / suitable excavated material or with suitable imported material [12029]; Bulldozer [300 h]; Water Tanker [300 h]; Truck [600 h]; Road Roller [300 h]; Labor [900 h]; Driver [900 h]; Eq. Operator [600 h] | 192,464 | A 1140 | RD |
| MKH2-02-004-CNS-1290 |  | Subgrade [Local 29 ] | 14d | 2026-12-05 | 2026-12-20 | MKH2-02-004-CNS-2520, MKH2-02-004-CNS-1200, MKH2-02-004-CNS-1280 | 0d |  | Subgrade [3672]; Truck [280 h]; Road Roller [140 h]; Labor [280 h]; Driver [280 h]; Eq. Operator [140 h] | 80,784 | A 1230 | RD |
| MKH2-02-004-CNS-1370 |  | Aggregate base course [Local 29 ] | 14d | 2026-12-21 | 2027-01-05 | MKH2-02-004-CNS-1290, MKH2-02-004-PRC-1020, MKH2-02-004-CNS-1360 | 6d | 0d | Aggregate base course [2448]; Loader [140 h]; Grader [140 h]; Truck [280 h]; Road Roller [140 h]; Labor [420 h]; Driver [280 h]; Eq. Operator [420 h] | 127,296 | A 1330 | RD |
|  | 2 | **Asphalt Works** |  | 2027-01-06 | 2027-01-26 |  |  |  |  |  |  |  |
| MKH2-02-004-CNS-1450 |  | Prime Coat (MC1) [Local 29 ] | 8d | 2027-01-06 | 2027-01-14 | MKH2-02-004-CNS-1370, MKH2-02-004-CNS-1440 | 18d | 0d | Bituminous base course (Grading I - Class A), including Prime Coat (MC1) [86]; Truck [80 h]; Road Roller [80 h]; Asphalte Paver [80 h]; Labor [160 h]; Driver [80 h]; Eq. Operator [160 h] | 48,160 | A 1440 | RD |
| MKH2-02-004-CNS-1530 |  | Bituminous base course [Local 29 ] | 10d | 2027-01-16 | 2027-01-26 | MKH2-02-004-CNS-1450, MKH2-02-004-PRC-1050 | 20d | 0d | Bituminous base course (Grading I - Class A), including Prime Coat (MC1) [772]; Truck [200 h]; Road Roller [100 h]; Labor [400 h]; Driver [200 h]; Eq. Operator [100 h] | 432,320 | A 1530 | RD |
|  | 3 | **Finishing Works** |  | 2027-01-27 | 2027-03-03 |  |  |  |  |  |  |  |
|  | 1 | **Precast Concrete Curb** |  | 2027-01-27 | 2027-02-02 |  |  |  |  |  |  |  |
| MKH2-02-004-CNS-1610 |  | Installation of Precast Concrete curb [Local 29 ] | 6d | 2027-01-27 | 2027-02-02 | MKH2-02-004-CNS-1530, MKH2-02-004-PRC-1080 | 20d | 0d | Precast Concrete Kerb, Type K4 [2381]; Labor [360 h]; Skilled Labor [240 h] | 142,240.71 | A 1670 | RD |
|  | 2 | **Precast Interlocking block pavers** |  | 2027-02-03 | 2027-02-09 |  |  |  |  |  |  |  |
| MKH2-02-004-CNS-1690 |  | Installation of Interlocking block pavers for sidewalk/footpath [Local 29 ] | 6d | 2027-02-03 | 2027-02-09 | MKH2-02-004-CNS-1610, MKH2-02-004-PRC-1110 | 20d | 0d | 60mm thick - Interlocking block pavers for sidewalk/footpath [2733]; Labor [360 h]; Mason [720 h] | 191,310 | A 1770 | RD |
|  | 3 | **Pavement Markings** |  | 2027-02-10 | 2027-02-24 |  |  |  |  |  |  |  |
| MKH2-02-004-CNS-1770 |  | Pavement markings [Local 29 ] | 6d | 2027-02-10 | 2027-02-16 | MKH2-02-004-CNS-1690, MKH2-02-004-PRC-1140, MKH2-02-004-CNS-1530 | 20d | 0d | Retroreflective Thermoplastic Yellow, Traffic lines [530]; Labor [60 h]; Skilled Labor [60 h] | 23,850 | A 1890 | RD |
| MKH2-02-004-CNS-1850 |  | (Speed Hump) with retroreflectiveThermoplastic yellow [Local 29 ] | 6d | 2027-02-17 | 2027-02-24 | MKH2-02-004-CNS-1770 | 20d | 0d | (Speed Hump) with retroreflectiveThermoplastic yellow [2]; Labor [180 h]; Skilled Labor [120 h] | 24,000 | A 1980 | RD |
|  | 4 | **Traffic Signage** |  | 2027-02-25 | 2027-03-03 |  |  |  |  |  |  |  |
| MKH2-02-004-CNS-1930 |  | Installation of Traffic Signs [Local 29 ] | 6d | 2027-02-25 | 2027-03-03 | MKH2-02-004-CNS-1850, MKH2-02-004-PRC-1170, MKH2-02-004-CNS-1530 | 20d | 6d | Traffic signs, ground mounted, Sheet Alumenium, (breakaway)Single post, with all accessories [17]; Labor [180 h]; Skilled Labor [120 h] | 30,600 | A 2080 | RD |

| ID | WBS | Activity | Duration | Start | Finish | Predecessors | Total float | Free float | Resources | Cost | HM MAkkah 03 old activity id | Construction |
| --- | --- | --- | --- | --- | --- | --- | --- | --- | --- | --- | --- | --- |
|  | 2 | **Storm Water Drainage** |  | 2026-10-13 | 2026-12-20 |  |  |  |  |  |  |  |
|  | 1 | **Pipe Works** |  | 2026-10-13 | 2026-11-18 |  |  |  |  |  |  |  |
| MKH2-02-004-CNS-2040 |  | Excavation & Compaction (FDT) [Local 29 ] | 6d | 2026-10-13 | 2026-10-19 | MKH2-02-004-CNS-1200 | 13d | 0d | Depth: 0.0m - 1.5m [513]; Excavator [300 h]; Water Tanker [300 h]; Truck [600 h]; Compactor [300 h]; Labor [900 h]; Driver [900 h]; Eq. Operator [600 h] | 54,713.62 | A 2580 | SD |
| MKH2-02-004-CNS-2160 |  | Sand Bedding [Local 29 ] | 6d | 2026-10-20 | 2026-10-26 | MKH2-02-004-CNS-2040 | 13d | 0d | Depth: 1.51m - 2.5m [513]; Loader [60 h]; Truck [60 h]; Labor [120 h]; Driver [60 h]; Eq. Operator [60 h] | 54,713.62 | A 2670 | SD |
| MKH2-02-004-CNS-2280 |  | Installation of GRP Pipe [Local 29 ] | 9d | 2026-10-27 | 2026-11-05 | MKH2-02-004-CNS-2160, MKH2-02-004-PRC-1200, MKH2-02-004-PRC-1210 | 13d | 0d | Depth: more than 2.5m [513]; Labor [180 h]; Plumber [90 h] | 273,568.11 | A 2760 | SD |
| MKH2-02-004-CNS-2400 |  | Sand Cover & Warning Tape [Local 29 ] | 5d | 2026-11-07 | 2026-11-11 | MKH2-02-004-CNS-2280 | 13d | 0d | Depth: 1.51m - 2.5m [513]; Loader [50 h]; Labor [100 h]; Skilled Labor [50 h]; Eq. Operator [50 h] | 109,427.24 | A 2850 | SD |
| MKH2-02-004-CNS-2520 |  | Backfilling & Compaction [Local 29 ] | 6d | 2026-11-12 | 2026-11-18 | MKH2-02-004-CNS-2400 | 13d |  | Depth: 3.51m - 4.5m [513]; Bulldozer [120 h]; Water Tanker [120 h]; Truck [120 h]; Compactor [120 h]; Labor [240 h]; Driver [240 h]; Eq. Operator [240 h] | 54,713.62 | A 2940 | SD |
|  | 2 | **Manholes** |  | 2026-11-07 | 2026-11-22 |  |  |  |  |  |  |  |
| MKH2-02-004-CNS-2710 |  | Installation of Manholes [Local 29 ]-Stage 1-[MH 01 to MH 07] | 7d | 2026-11-07 | 2026-11-14 | MKH2-02-004-CNS-2280 | 26d | 0d | MH depth more than 2.5 m [7]; Excavator [140 h]; Crane [140 h]; Labor [280 h]; Skilled Labor [140 h]; Eq. Operator [280 h] | 165,034.72 | A 3201 | SD |
| MKH2-02-004-CNS-2720 |  | Installation of Manholes [Local 29 ]-Stage 2-[MH 08 to MH 15] | 7d | 2026-11-15 | 2026-11-22 | MKH2-02-004-CNS-2710 | 28d | 0d | MH depth 0 - 1.5m [8]; Excavator [210 h]; Labor [420 h]; Skilled Labor [210 h]; Eq. Operator [210 h] | 188,611.11 | A 3202 | SD |
|  | 3 | **Catch Basins** |  | 2026-11-15 | 2026-12-13 |  |  |  |  |  |  |  |
| MKH2-02-004-CNS-3000 |  | Construction of Catch basins [Local 29 ]-Stage 1-[01 to 10] | 7d | 2026-11-15 | 2026-11-22 | MKH2-02-004-CNS-2710 | 26d | 0d | Double Catch basin [10]; Labor [280 h]; Mason [140 h] | 73,606.81 | A 3321 | SD |
| MKH2-02-004-CNS-3010 |  | Construction of Catch basins [Local 29 ]-Stage 2-[11 to 20] | 7d | 2026-11-23 | 2026-11-30 | MKH2-02-004-CNS-3000 | 26d | 0d | Double Catch basin [10]; Excavator [140 h]; Labor [280 h]; Eq. Operator [140 h]; Mason [140 h] | 73,606.81 | A 3322 | SD |
| MKH2-02-004-CNS-3020 |  | Construction of Catch basins [Local 29 ]-Stage 3-[21 to 30] | 7d | 2026-12-01 | 2026-12-08 | MKH2-02-004-CNS-3010 | 26d | 0d | Double Catch basin [10]; Excavator [140 h]; Labor [280 h]; Eq. Operator [140 h]; Mason [140 h] | 73,606.81 | A 3323 | SD |
| MKH2-02-004-CNS-3030 |  | Construction of Catch basins [Local 29 ]-Stage 4-[31 to 35] | 4d | 2026-12-09 | 2026-12-13 | MKH2-02-004-CNS-3020 | 26d | 0d | Double Catch basin [5]; Excavator [80 h]; Labor [160 h]; Eq. Operator [80 h]; Mason [80 h] | 36,803.41 | A 3324 | SD |
|  | 4 | **Concrete chambers Pipes** |  | 2026-11-23 | 2026-12-20 |  |  |  |  |  |  |  |
| MKH2-02-004-CNS-3180 |  | Excavation and Compaction (FDT) [Local 29 ] | 7d | 2026-11-23 | 2026-11-30 | MKH2-02-004-CNS-3000, MKH2-02-004-CNS-2720 | 28d | 0d | 300mm Diameter [675]; Excavator [140 h]; Water Tanker [140 h]; Truck [140 h]; Compactor [140 h]; Labor [280 h]; Driver [280 h]; Eq. Operator [280 h] | 56,407.58 | A 3440 | SD |
| MKH2-02-004-CNS-3270 |  | Installation of Pipes [Local 29 ] | 9d | 2026-12-01 | 2026-12-10 | MKH2-02-004-CNS-3180 | 28d | 2d | 400mm Diameter [675]; Loader [90 h]; Truck [90 h]; Labor [180 h]; Driver [90 h]; Eq. Operator [90 h]; Plumber [90 h] | 169,222.72 | A 3530 | SD |
| MKH2-02-004-CNS-3360 |  | Backfilling & Compaction [Local 29 ] | 6d | 2026-12-14 | 2026-12-20 | MKH2-02-004-CNS-3270, MKH2-02-004-CNS-2720, MKH2-02-004-CNS-3030 | 26d | 14d | 300mm Diameter [675]; Labor [240 h] | 56,407.58 | A 3620 | SD |
|  | 7 | **Local 30** |  | 2026-10-13 | 2027-03-21 |  |  |  |  |  |  |  |
|  | 1 | **Road Works** |  | 2026-10-13 | 2027-03-21 |  |  |  |  |  |  |  |
|  | 1 | **Eartworks & Site grading** |  | 2026-10-13 | 2027-01-19 |  |  |  |  |  |  |  |
| MKH2-02-004-CNS-1090 |  | Road excavation [Local 30 ] | 11d | 2026-10-13 | 2026-10-25 | MKH2-02-004-CNS-1200 | 3d | 0d | Roadway Excavation for cuttings (all types of soil) [23904]; Excavator [550 h]; Bulldozer [550 h]; Grader [550 h]; Truck [1100 h]; Bobcat [550 h]; Labor [1650 h]; Driver [1100 h]; Eq. Operator [2200 h] | 525,888 | A 1060 | RD |
| MKH2-02-004-CNS-1210 |  | Road backfilling [Local 30 ] | 11d | 2026-10-13 | 2026-10-25 | MKH2-02-004-CNS-1090 SS | 3d | 0d | Embankments to the ROW with common / suitable excavated material or with suitable imported material [12029]; Bulldozer [220 h]; Grader [220 h]; Truck [440 h]; Road Roller [220 h]; Bobcat [220 h]; Labor [660 h]; Driver [440 h]; Eq. Operator [880 h] | 192,464 | A 1150 | RD |
| MKH2-02-004-CNS-1300 |  | Subgrade [Local 30 ] | 14d | 2026-12-21 | 2027-01-05 | MKH2-02-004-CNS-2530, MKH2-02-004-CNS-1210, MKH2-02-004-CNS-1290 | 0d |  | Subgrade [3672]; Water Tanker [140 h]; Grader [140 h]; Truck [280 h]; Road Roller [140 h]; Labor [280 h]; Driver [420 h]; Eq. Operator [280 h] | 80,784 | A 1240 | RD |
| MKH2-02-004-CNS-1380 |  | Aggregate base course [Local 30 ] | 12d | 2027-01-06 | 2027-01-19 | MKH2-02-004-CNS-1300, MKH2-02-004-PRC-1020, MKH2-02-004-CNS-1370 | 6d | 0d | Aggregate base course [2448]; Loader [120 h]; Water Tanker [120 h]; Truck [240 h]; Road Roller [120 h]; Labor [360 h]; Driver [360 h]; Eq. Operator [240 h] | 127,296 | A 1340 | RD |

| ID | WBS | Activity | Duration | Start | Finish | Predecessors | Total float | Free float | Resources | Cost | HM MAkkah 03 old activity id | Construction |
| --- | --- | --- | --- | --- | --- | --- | --- | --- | --- | --- | --- | --- |
|  | 2 | **Asphalt Works** |  | 2027-01-20 | 2027-02-09 |  |  |  |  |  |  |  |
| MKH2-02-004-CNS-1460 |  | Prime Coat (MC1) [Local 30 ] | 8d | 2027-01-20 | 2027-01-28 | MKH2-02-004-CNS-1380, MKH2-02-004-CNS-1450 | 14d | 0d | Bituminous base course (Grading I - Class A), including Prime Coat (MC1) [86]; Water Tanker [80 h]; Grader [80 h]; Truck [80 h]; Road Roller [80 h]; Asphalte Paver [80 h]; Labor [160 h]; Driver [160 h]; Eq. Operator [240 h] | 48,160 | A 1450 | RD |
| MKH2-02-004-CNS-1540 |  | Bituminous base course [Local 30 ] | 10d | 2027-01-30 | 2027-02-09 | MKH2-02-004-CNS-1460, MKH2-02-004-PRC-1050 | 14d | 0d | Bituminous base course (Grading I - Class A), including Prime Coat (MC1) [772]; Truck [200 h]; Road Roller [100 h]; Asphalte Paver [100 h]; Labor [400 h]; Driver [200 h]; Eq. Operator [200 h] | 432,320 | A 1540 | RD |
|  | 3 | **Finishing Works** |  | 2027-02-10 | 2027-03-21 |  |  |  |  |  |  |  |
|  | 1 | **Precast Concrete Curb** |  | 2027-02-10 | 2027-02-16 |  |  |  |  |  |  |  |
| MKH2-02-004-CNS-1620 |  | Installation of Precast Concrete curb [Local 30 ] | 6d | 2027-02-10 | 2027-02-16 | MKH2-02-004-PRC-1080, MKH2-02-004-CNS-1540 | 14d | 0d | Precast Concrete Kerb, Type K1-B [2381]; Labor [360 h]; Skilled Labor [240 h] | 142,240.71 | A 1680 | RD |
|  | 2 | **Precast Interlocking block pavers** |  | 2027-02-17 | 2027-02-24 |  |  |  |  |  |  |  |
| MKH2-02-004-CNS-1700 |  | Installation of Interlocking block pavers for sidewalk/footpath [Local 30 ] | 6d | 2027-02-17 | 2027-02-24 | MKH2-02-004-CNS-1620, MKH2-02-004-PRC-1110 | 14d | 0d | 60mm thick - Interlocking block pavers for sidewalk/footpath [2733]; Road Roller [120 h]; Compactor [120 h]; Labor [360 h]; Eq. Operator [240 h]; Mason [720 h] | 191,310 | A 1780 | RD |
|  | 3 | **Pavement Markings** |  | 2027-02-25 | 2027-03-14 |  |  |  |  |  |  |  |
| MKH2-02-004-CNS-1780 |  | Pavement markings [Local 30 ] | 6d | 2027-02-25 | 2027-03-03 | MKH2-02-004-CNS-1700, MKH2-02-004-PRC-1140, MKH2-02-004-CNS-1540 | 14d | 0d | Retroreflective Thermoplastic White Traffic lines [530]; Labor [60 h]; Skilled Labor [60 h] | 23,850 | A 1900 | RD |
| MKH2-02-004-CNS-1860 |  | (Speed Hump) with retroreflectiveThermoplastic yellow [Local 30 ] | 6d | 2027-03-04 | 2027-03-14 | MKH2-02-004-CNS-1780 | 14d | 0d | (Speed Hump) with retroreflectiveThermoplastic yellow [2]; Labor [180 h]; Skilled Labor [120 h] | 24,000 | A 1990 | RD |
|  | 4 | **Traffic Signage** |  | 2027-03-15 | 2027-03-21 |  |  |  |  |  |  |  |
| MKH2-02-004-CNS-1940 |  | Installation of Traffic Signs [Local 30 ] | 6d | 2027-03-15 | 2027-03-21 | MKH2-02-004-CNS-1860, MKH2-02-004-PRC-1170, MKH2-02-004-CNS-1930, MKH2-02-004-CNS-1540, MKH2-02-004-CNS-1920, MKH2-02-004-CNS-1900 | 14d |  | Traffic signs, ground mounted, Sheet Alumenium, (breakaway)Single post, with all accessories [17]; Labor [180 h]; Skilled Labor [120 h] | 30,600 | A 2090 | RD |
|  | 2 | **Storm Water Drainage** |  | 2026-10-26 | 2027-01-12 |  |  |  |  |  |  |  |
|  | 1 | **Pipe Works** |  | 2026-10-26 | 2026-12-09 |  |  |  |  |  |  |  |
| MKH2-02-004-CNS-2050 |  | Excavation & Compaction (FDT) [Local 30 ] | 6d | 2026-10-26 | 2026-11-01 | MKH2-02-004-CNS-1210 | 9d | 0d | Depth: 0.0m - 1.5m [582]; Truck [600 h]; Bobcat [300 h]; Labor [900 h]; Driver [600 h]; Eq. Operator [300 h] | 62,072.76 | A 2590 | SD |
| MKH2-02-004-CNS-2170 |  | Sand Bedding [Local 30 ] | 6d | 2026-11-02 | 2026-11-08 | MKH2-02-004-CNS-2050 | 9d | 0d | Depth: 1.51m - 2.5m [582]; Loader [60 h]; Truck [60 h]; Labor [120 h]; Driver [60 h]; Eq. Operator [60 h] | 62,072.76 | A 2680 | SD |
| MKH2-02-004-CNS-2290 |  | Installation of GRP Pipe [Local 30 ] | 10d | 2026-11-09 | 2026-11-19 | MKH2-02-004-CNS-2170, MKH2-02-004-PRC-1220 | 9d | 0d | Depth: 0.0m - 1.5m [582]; Crane [100 h]; Labor [200 h]; Eq. Operator [100 h]; Plumber [100 h] | 310,363.82 | A 2770 | SD |
| MKH2-02-004-CNS-2410 |  | Sand Cover & Warning Tape [Local 30 ] | 5d | 2026-11-21 | 2026-11-25 | MKH2-02-004-CNS-2290 | 9d | 0d | Depth: 2.51m - 3.5m [582]; Loader [50 h]; Labor [100 h]; Skilled Labor [50 h]; Eq. Operator [50 h] | 124,145.53 | A 2860 | SD |
| MKH2-02-004-CNS-2530 |  | Backfilling & Compaction [Local 30 ] | 12d | 2026-11-26 | 2026-12-09 | MKH2-02-004-CNS-2410 | 9d |  | Depth: 4.51m - 5.5 m [582]; Truck [120 h]; Labor [240 h]; Driver [120 h] | 62,072.76 | A 2950 | SD |
|  | 2 | **Manholes** |  | 2026-11-21 | 2026-12-22 |  |  |  |  |  |  |  |
| MKH2-02-004-CNS-2730 |  | Installation of Manholes [Local 30 ]-Stage 1-[MH 01 to MH 07] | 14d | 2026-11-21 | 2026-12-06 | MKH2-02-004-CNS-2290, MKH2-02-004-PRC-1260 | 12d | 0d | MH depth 1.51 - 2.5m [7]; Labor [280 h]; Skilled Labor [140 h] | 165,034.72 | A 3211 | SD |
| MKH2-02-004-CNS-2740 |  | Installation of Manholes [Local 30 ]-Stage 2-[MH 08 to MH 14] | 14d | 2026-12-07 | 2026-12-22 | MKH2-02-004-CNS-2730 | 24d | 12d | MH depth 2.51 - 3.5m [7]; Excavator [140 h]; Crane [140 h]; Labor [280 h]; Skilled Labor [140 h]; Eq. Operator [280 h] | 165,034.72 | A 3212 | SD |
|  | 3 | **Catch Basins** |  | 2026-12-07 | 2027-01-11 |  |  |  |  |  |  |  |
| MKH2-02-004-CNS-3040 |  | Construction of Catch basins [Local 30 ]-Stage 1-[01 to 10] | 10d | 2026-12-07 | 2026-12-17 | MKH2-02-004-CNS-2730, MKH2-02-004-PRC-1310 | 12d | 0d | Single Catch basin [10]; Labor [200 h]; Mason [100 h] | 73,606.81 | A 3331 | SD |
| MKH2-02-004-CNS-3050 |  | Construction of Catch basins [Local 30 ]-Stage 2-[11 to 20] | 10d | 2026-12-19 | 2026-12-29 | MKH2-02-004-CNS-3040 | 13d | 0d | Single Catch basin [10]; Excavator [100 h]; Labor [200 h]; Eq. Operator [100 h]; Mason [100 h] | 73,606.81 | A 3332 | SD |
| MKH2-02-004-CNS-3060 |  | Construction of Catch basins [Local 30 ]-Stage 3-[21 to 31] | 11d | 2026-12-30 | 2027-01-11 | MKH2-02-004-CNS-3050 | 13d | 1d | Single Catch basin [11]; Excavator [110 h]; Labor [220 h]; Eq. Operator [110 h]; Mason [110 h] | 80,967.49 | A 3333 | SD |

| ID | WBS | Activity | Duration | Start | Finish | Predecessors | Total float | Free float | Resources | Cost | HM MAkkah 03 old activity id | Construction |
| --- | --- | --- | --- | --- | --- | --- | --- | --- | --- | --- | --- | --- |
|  | 4 | **Concrete chambers Pipes** |  | 2026-12-19 | 2027-01-12 |  |  |  |  |  |  |  |
| MKH2-02-004-CNS-3190 |  | Excavation and Compaction (FDT) [Local 30 ] | 7d | 2026-12-19 | 2026-12-26 | MKH2-02-004-CNS-3040, MKH2-02-004-CNS-3330 | 12d | 0d | 300mm Diameter [616]; Excavator [140 h]; Truck [140 h]; Labor [280 h]; Driver [140 h]; Eq. Operator [140 h] | 51,477.14 | A 3450 | SD |
| MKH2-02-004-CNS-3280 |  | Installation of Pipes [Local 30 ] | 9d | 2026-12-27 | 2027-01-05 | MKH2-02-004-CNS-3190 | 12d | 0d | 400mm Diameter [616]; Loader [90 h]; Truck [90 h]; Labor [180 h]; Driver [90 h]; Eq. Operator [90 h]; Plumber [90 h] | 154,431.4 | A 3540 | SD |
| MKH2-02-004-CNS-3370 |  | Backfilling & Compaction [Local 30 ] | 6d | 2027-01-06 | 2027-01-12 | MKH2-02-004-CNS-3280, MKH2-02-004-CNS-2740, MKH2-02-004-CNS-3360, MKH2-02-004-CNS-3350, MKH2-02-004-CNS-3060 FF | 12d |  | 300mm Diameter [616]; Labor [240 h]; Plumber [120 h] | 51,477.14 | A 3630 | SD |
|  | 8 | **Local 31** |  | 2026-10-26 | 2027-05-06 |  |  |  |  |  |  |  |
|  | 1 | **Road Works** |  | 2026-10-26 | 2027-05-06 |  |  |  |  |  |  |  |
|  | 1 | **Eartworks & Site grading** |  | 2026-10-26 | 2027-02-16 |  |  |  |  |  |  |  |
| MKH2-02-004-CNS-1100 |  | Road excavation [Local 31 ]-Stage 1 | 12d | 2026-10-26 | 2026-11-08 | MKH2-02-004-CNS-1210 | 3d | 0d | Roadway Excavation for cuttings (all types of soil) [19398]; Excavator [480 h]; Bulldozer [480 h]; Water Tanker [480 h]; Truck [960 h]; Labor [1440 h]; Driver [1440 h]; Eq. Operator [960 h] | 426,756 | A 1071 | RD |
| MKH2-02-004-CNS-1220 |  | Road backfilling [Local 31 ]-Stage 1 | 12d | 2026-10-26 | 2026-11-08 | MKH2-02-004-CNS-1100 SS | 3d | 0d | Embankments to the ROW with common / suitable excavated material or with suitable imported material [9763]; Water Tanker [240 h]; Grader [240 h]; Truck [480 h]; Road Roller [240 h]; Compactor [240 h]; Labor [720 h]; Driver [720 h]; Eq. Operator [720 h] | 156,208 | A 1161 | RD |
| MKH2-02-004-CNS-1110 |  | Road excavation [Local 31 ]-Stage 2 | 12d | 2026-11-09 | 2026-11-22 | MKH2-02-004-CNS-1100 | 10d | 0d | Roadway Excavation for cuttings (all types of soil) [19398]; Truck [960 h]; Labor [1440 h]; Driver [960 h] | 426,756 | A 1072 | RD |
| MKH2-02-004-CNS-1230 |  | Road backfilling [Local 31 ]-Stage 2 | 12d | 2026-11-09 | 2026-11-22 | MKH2-02-004-CNS-1220, MKH2-02-004-CNS-1110 SS | 10d | 4d | Embankments to the ROW with common / suitable excavated material or with suitable imported material [9762]; Bulldozer [240 h]; Truck [480 h]; Road Roller [240 h]; Labor [720 h]; Driver [480 h]; Eq. Operator [480 h] | 156,192 | A 1162 | RD |
| MKH2-02-004-CNS-1310 |  | Subgrade [Local 31 ] | 18d | 2027-01-06 | 2027-01-26 | MKH2-02-004-CNS-1230, MKH2-02-004-CNS-2540, MKH2-02-004-CNS-2550, MKH2-02-004-CNS-1300 | 0d |  | Subgrade [5962]; Truck [360 h]; Road Roller [180 h]; Bobcat [180 h]; Compactor [180 h]; Labor [360 h]; Driver [360 h]; Eq. Operator [540 h] | 131,164 | A 1250 | RD |
| MKH2-02-004-CNS-1390 |  | Aggregate base course [Local 31 ] | 18d | 2027-01-27 | 2027-02-16 | MKH2-02-004-CNS-1310, MKH2-02-004-PRC-1020, MKH2-02-004-CNS-3370, MKH2-02-004-CNS-1380 | 0d |  | Aggregate base course [3974]; Loader [180 h]; Truck [360 h]; Road Roller [180 h]; Labor [540 h]; Driver [360 h]; Eq. Operator [360 h] | 206,648 | A 1350 | RD |
|  | 2 | **Asphalt Works** |  | 2027-02-17 | 2027-03-15 |  |  |  |  |  |  |  |
| MKH2-02-004-CNS-1470 |  | Prime Coat (MC1) [Local 31 ] | 9d | 2027-02-17 | 2027-02-28 | MKH2-02-004-CNS-1390, MKH2-02-004-CNS-1440, MKH2-02-004-CNS-1460 | 0d |  | Bituminous base course (Grading I - Class A), including Prime Coat (MC1) [138]; Truck [90 h]; Road Roller [90 h]; Asphalte Paver [90 h]; Labor [180 h]; Driver [90 h]; Eq. Operator [180 h] | 77,280 | A 1460 | RD |
| MKH2-02-004-CNS-1550 |  | Bituminous base course [Local 31 ] | 10d | 2027-03-01 | 2027-03-15 | MKH2-02-004-CNS-1470, MKH2-02-004-PRC-1050, MKH2-02-004-CNS-1520 | 0d |  | Bituminous base course (Grading I - Class A), including Prime Coat (MC1) [1250]; Truck [200 h]; Road Roller [100 h]; Asphalte Paver [100 h]; Labor [400 h]; Driver [200 h]; Eq. Operator [200 h] | 700,000 | A 1550 | RD |
|  | 3 | **Finishing Works** |  | 2027-03-16 | 2027-05-06 |  |  |  |  |  |  |  |
|  | 1 | **Precast Concrete Curb** |  | 2027-03-16 | 2027-03-27 |  |  |  |  |  |  |  |
| MKH2-02-004-CNS-1630 |  | Installation of Precast Concrete curb [Local 31 ] | 10d | 2027-03-16 | 2027-03-27 | MKH2-02-004-CNS-1550, MKH2-02-004-PRC-1080 | 0d |  | Depressed curbs Type K2 [3865]; Labor [600 h]; Skilled Labor [400 h] | 230,894.73 | A 1690 | RD |
|  | 2 | **Precast Interlocking block pavers** |  | 2027-03-28 | 2027-04-06 |  |  |  |  |  |  |  |
| MKH2-02-004-CNS-1710 |  | Installation of Interlocking block pavers for sidewalk/footpath [Local 31 ] | 9d | 2027-03-28 | 2027-04-06 | MKH2-02-004-CNS-1630, MKH2-02-004-PRC-1110 | 0d |  | 60mm thick - Interlocking block pavers for sidewalk/footpath [4434]; Labor [540 h]; Mason [1080 h] | 310,380 | A 1790 | RD |
|  | 3 | **Pavement Markings** |  | 2027-04-07 | 2027-04-27 |  |  |  |  |  |  |  |
| MKH2-02-004-CNS-1790 |  | Pavement markings [Local 31 ] | 9d | 2027-04-07 | 2027-04-17 | MKH2-02-004-CNS-1710, MKH2-02-004-PRC-1140, MKH2-02-004-CNS-1550, MKH2-02-004-CNS-1940 | 0d |  | Retroreflective Thermoplastic Yellow, Traffic lines [862]; Labor [90 h]; Skilled Labor [90 h] | 38,790 | A 1910 | RD |
| MKH2-02-004-CNS-1870 |  | (Speed Hump) with retroreflectiveThermoplastic yellow [Local 31 ] | 9d | 2027-04-18 | 2027-04-27 | MKH2-02-004-CNS-1790 | 0d |  | (Speed Hump) with retroreflectiveThermoplastic yellow [3]; Labor [270 h]; Skilled Labor [180 h] | 36,000 | A 2000 | RD |

| ID | WBS | Activity | Duration | Start | Finish | Predecessors | Total float | Free float | Resources | Cost | HM MAkkah 03 old activity id | Construction |
| --- | --- | --- | --- | --- | --- | --- | --- | --- | --- | --- | --- | --- |
|  | 4 | **Traffic Signage** |  | 2027-04-28 | 2027-05-06 |  |  |  |  |  |  |  |
| MKH2-02-004-CNS-1950 |  | Installation of Traffic Signs [Local 31 ] | 8d | 2027-04-28 | 2027-05-06 | MKH2-02-004-CNS-1870, MKH2-02-004-PRC-1170, MKH2-02-004-CNS-1550 | 20d |  | Traffic signs, ground mounted, Sheet Alumenium, (breakaway)Single post, with all accessories [27]; Labor [240 h]; Skilled Labor [160 h] | 48,600 | A 2100 | RD |
|  | 2 | **Storm Water Drainage** |  | 2026-11-09 | 2027-02-02 |  |  |  |  |  |  |  |
|  | 1 | **Pipe Works** |  | 2026-11-09 | 2026-12-31 |  |  |  |  |  |  |  |
| MKH2-02-004-CNS-2060 |  | Excavation & Compaction (FDT) [Local 31 ]-Stage 1 | 8d | 2026-11-09 | 2026-11-17 | MKH2-02-004-CNS-1220 | 4d | 0d | Depth: 0.0m - 1.5m [298]; Excavator [160 h]; Water Tanker [160 h]; Truck [320 h]; Compactor [160 h]; Labor [480 h]; Driver [480 h]; Eq. Operator [320 h] | 31,782.96 | A 2601 | SD |
| MKH2-02-004-CNS-2070 |  | Excavation & Compaction (FDT) [Local 31 ]-Stage 2 | 8d | 2026-11-18 | 2026-11-26 | MKH2-02-004-CNS-2060, MKH2-02-004-CNS-1230 FF | 6d | 2d | Depth: 0.0m - 1.5m [297]; Excavator [160 h]; Truck [320 h]; Labor [480 h]; Driver [320 h]; Eq. Operator [160 h] | 31,676.31 | A 2602 | SD |
| MKH2-02-004-CNS-2180 |  | Sand Bedding [Local 31 ]-Stage 1 | 10d | 2026-11-18 | 2026-11-29 | MKH2-02-004-CNS-2060 | 4d | 0d | Depth: > 2.5m [298]; Loader [100 h]; Truck [100 h]; Labor [200 h]; Driver [100 h]; Eq. Operator [100 h] | 31,782.96 | A 2691 | SD |
| MKH2-02-004-CNS-2190 |  | Sand Bedding [Local 31 ]-Stage 2 | 10d | 2026-11-30 | 2026-12-10 | MKH2-02-004-CNS-2180, MKH2-02-004-CNS-2070 | 4d | 0d | Depth: > 2.5m [297]; Loader [100 h]; Truck [100 h]; Labor [200 h]; Driver [100 h]; Eq. Operator [100 h] | 31,676.31 | A 2692 | SD |
| MKH2-02-004-CNS-2300 |  | Installation of GRP Pipe [Local 31 ]-Stage 1 | 8d | 2026-11-30 | 2026-12-08 | MKH2-02-004-CNS-2180, MKH2-02-004-PRC-1220 | 6d | 0d | Depth: 1.51m - 2.5m [298]; Labor [160 h]; Plumber [80 h] | 158,914.81 | A 2781 | SD |
| MKH2-02-004-CNS-2420 |  | Sand Cover & Warning Tape [Local 31 ]-Stage 1 | 5d | 2026-12-09 | 2026-12-14 | MKH2-02-004-CNS-2300 | 9d | 0d | Depth: more than 3.5m [298]; Loader [50 h]; Labor [100 h]; Skilled Labor [50 h]; Eq. Operator [50 h] | 63,565.92 | A 2871 | SD |
| MKH2-02-004-CNS-2310 |  | Installation of GRP Pipe [Local 31 ]-Stage 2 | 8d | 2026-12-12 | 2026-12-20 | MKH2-02-004-CNS-2300, MKH2-02-004-CNS-2190, MKH2-02-004-PRC-1220 | 4d | 0d | Depth: 1.51m - 2.5m [297]; Crane [80 h]; Labor [160 h]; Eq. Operator [80 h]; Plumber [80 h] | 158,381.54 | A 2782 | SD |
| MKH2-02-004-CNS-2540 |  | Backfilling & Compaction [Local 31 ]-Stage 1 | 5d | 2026-12-15 | 2026-12-20 | MKH2-02-004-CNS-2420 | 9d | 5d | Depth: more than 5.5m [298]; Bulldozer [50 h]; Water Tanker [50 h]; Truck [50 h]; Compactor [50 h]; Labor [100 h]; Driver [100 h]; Eq. Operator [100 h] | 31,782.96 | A 2961 | SD |
| MKH2-02-004-CNS-2430 |  | Sand Cover & Warning Tape [Local 31 ]-Stage 2 | 5d | 2026-12-21 | 2026-12-26 | MKH2-02-004-CNS-2420, MKH2-02-004-CNS-2310 | 4d | 0d | Depth: more than 3.5m [297]; Loader [50 h]; Labor [100 h]; Skilled Labor [50 h]; Eq. Operator [50 h] | 63,352.61 | A 2872 | SD |
| MKH2-02-004-CNS-2550 |  | Backfilling & Compaction [Local 31 ]-Stage 2 | 5d | 2026-12-27 | 2026-12-31 | MKH2-02-004-CNS-2540, MKH2-02-004-CNS-2430 | 4d |  | Depth: more than 5.5m [297]; Bulldozer [50 h]; Truck [50 h]; Labor [100 h]; Driver [50 h]; Eq. Operator [50 h] | 31,676.31 | A 2962 | SD |
|  | 2 | **Manholes** |  | 2026-12-09 | 2027-01-24 |  |  |  |  |  |  |  |
| MKH2-02-004-CNS-2750 |  | Installation of Manholes [Local 31 ]-Stage 1-[MH 01 to MH 07] | 14d | 2026-12-09 | 2026-12-24 | MKH2-02-004-CNS-2300 | 33d | 0d | MH depth 3.51 - 4.5m [7]; Excavator [140 h]; Labor [280 h]; Skilled Labor [140 h]; Eq. Operator [140 h] | 165,034.72 | A 3221 | SD |
| MKH2-02-004-CNS-2760 |  | Installation of Manholes [Local 31 ]-Stage 2-[MH 08 to MH 14] | 14d | 2026-12-26 | 2027-01-10 | MKH2-02-004-CNS-2750 | 33d | 0d | MH depth 4.51 - 5.5 m [7]; Crane [140 h]; Labor [280 h]; Skilled Labor [140 h]; Eq. Operator [140 h] | 165,034.72 | A 3222 | SD |
| MKH2-02-004-CNS-2770 |  | Installation of Manholes [Local 31 ]-Stage 3-[MH 15 to MH 20] | 12d | 2027-01-11 | 2027-01-24 | MKH2-02-004-CNS-2760 | 33d | 0d | MH depth more than 5.5 m [6]; Excavator [120 h]; Labor [240 h]; Skilled Labor [120 h]; Eq. Operator [120 h] | 141,458.33 | A 3223 | SD |
|  | 3 | **Catch Basins** |  | 2026-12-26 | 2027-01-23 |  |  |  |  |  |  |  |
| MKH2-02-004-CNS-3070 |  | Construction of Catch basins [Local 31 ]-Stage 1-[01 to 10] | 5d | 2026-12-26 | 2026-12-30 | MKH2-02-004-CNS-2750 | 33d | 0d | Double Catch basin [10]; Excavator [100 h]; Labor [200 h]; Eq. Operator [100 h]; Mason [100 h] | 73,606.81 | A 3341 | SD |
| MKH2-02-004-CNS-3080 |  | Construction of Catch basins [Local 31 ]-Stage 2-[11 to 20] | 5d | 2026-12-31 | 2027-01-05 | MKH2-02-004-CNS-3070, MKH2-02-004-CNS-2990 | 34d | 0d | Double Catch basin [10]; Labor [200 h]; Mason [100 h] | 73,606.81 | A 3342 | SD |
| MKH2-02-004-CNS-3090 |  | Construction of Catch basins [Local 31 ]-Stage 3-[21 to 31] | 5d | 2027-01-06 | 2027-01-11 | MKH2-02-004-CNS-3080, MKH2-02-004-CNS-2890 | 34d | 0d | Double Catch basin [10]; Excavator [100 h]; Labor [200 h]; Eq. Operator [100 h]; Mason [100 h] | 73,606.81 | A 3343 | SD |
| MKH2-02-004-CNS-3100 |  | Construction of Catch basins [Local 31 ]-Stage 4-[31 to 40] | 5d | 2027-01-12 | 2027-01-17 | MKH2-02-004-CNS-3090 | 34d | 0d | Double Catch basin [10]; Excavator [100 h]; Labor [200 h]; Eq. Operator [100 h]; Mason [100 h] | 73,606.81 | A 3344 | SD |
| MKH2-02-004-CNS-3110 |  | Construction of Catch basins [Local 31 ]-Stage 5-[41 to 49] | 5d | 2027-01-18 | 2027-01-23 | MKH2-02-004-CNS-3100, MKH2-02-004-CNS-3060 | 34d | 1d | Double Catch basin [9]; Excavator [100 h]; Labor [200 h]; Eq. Operator [100 h]; Mason [100 h] | 66,246.13 | A 3345 | SD |

| ID | WBS | Activity | Duration | Start | Finish | Predecessors | Total float | Free float | Resources | Cost | HM MAkkah 03 old activity id | Construction |
| --- | --- | --- | --- | --- | --- | --- | --- | --- | --- | --- | --- | --- |
|  | 4 | **Concrete chambers Pipes** |  | 2026-12-31 | 2027-02-02 |  |  |  |  |  |  |  |
| MKH2-02-004-CNS-3200 |  | Excavation and Compaction (FDT) [Local 31 ] | 9d | 2026-12-31 | 2027-01-10 | MKH2-02-004-CNS-3070 | 33d | 0d | 300mm Diameter [850]; Excavator [180 h]; Water Tanker [180 h]; Truck [180 h]; Compactor [180 h]; Labor [360 h]; Driver [360 h]; Eq. Operator [360 h] | 71,031.76 | A 3460 | SD |
| MKH2-02-004-CNS-3290 |  | Installation of Pipes [Local 31 ] | 12d | 2027-01-11 | 2027-01-24 | MKH2-02-004-CNS-3200 | 33d | 0d | 400mm Diameter [850]; Loader [120 h]; Truck [120 h]; Crane [120 h]; Labor [240 h]; Driver [120 h]; Eq. Operator [240 h]; Plumber [120 h] | 213,095.28 | A 3550 | SD |
| MKH2-02-004-CNS-3380 |  | Backfilling & Compaction [Local 31 ] | 8d | 2027-01-25 | 2027-02-02 | MKH2-02-004-CNS-3290, MKH2-02-004-CNS-2770, MKH2-02-004-CNS-3110 | 33d | 18d | 300mm Diameter [850]; Labor [320 h] | 71,031.76 | A 3640 | SD |
|  | 4 | **Local 28** |  | 2026-11-09 | 2027-06-03 |  |  |  |  |  |  |  |
|  | 1 | **Road Works** |  | 2026-11-09 | 2027-06-03 |  |  |  |  |  |  |  |
|  | 1 | **Eartworks & Site grading** |  | 2026-11-09 | 2027-03-08 |  |  |  |  |  |  |  |
| MKH2-02-004-CNS-1040 |  | Road excavation [Local 28 ]-Stage 1 | 12d | 2026-11-09 | 2026-11-22 | MKH2-02-004-CNS-1220 | 3d | 0d | Roadway Excavation for cuttings (all types of soil) [19357]; Excavator [480 h]; Bulldozer [480 h]; Truck [960 h]; Labor [1440 h]; Driver [960 h]; Eq. Operator [960 h] | 425,854 | A 1031 | RD |
| MKH2-02-004-CNS-1160 |  | Road backfilling [Local 28 ]-Stage 1 | 12d | 2026-11-09 | 2026-11-22 | MKH2-02-004-CNS-1040 SS | 3d | 0d | Embankments to the ROW with common / suitable excavated material or with suitable imported material [9741]; Bulldozer [240 h]; Water Tanker [240 h]; Truck [480 h]; Road Roller [240 h]; Labor [720 h]; Driver [720 h]; Eq. Operator [480 h] | 155,856 | A 1121 | RD |
| MKH2-02-004-CNS-1050 |  | Road excavation [Local 28 ]-Stage 2 | 12d | 2026-11-23 | 2026-12-06 | MKH2-02-004-CNS-1040 | 3d | 0d | Roadway Excavation for cuttings (all types of soil) [19356]; Bulldozer [480 h]; Water Tanker [480 h]; Truck [960 h]; Labor [1440 h]; Driver [1440 h]; Eq. Operator [480 h] | 425,832 | A 1032 | RD |
| MKH2-02-004-CNS-1170 |  | Road backfilling [Local 28 ]-Stage 2 | 12d | 2026-11-23 | 2026-12-06 | MKH2-02-004-CNS-1160, MKH2-02-004-CNS-1050 SS | 3d | 0d | Embankments to the ROW with common / suitable excavated material or with suitable imported material [9741]; Bulldozer [240 h]; Truck [480 h]; Road Roller [240 h]; Compactor [240 h]; Labor [720 h]; Driver [480 h]; Eq. Operator [720 h] | 155,856 | A 1122 | RD |
| MKH2-02-004-CNS-1270 |  | Subgrade [Local 28 ] | 16d | 2027-02-01 | 2027-02-18 | MKH2-02-004-CNS-2480, MKH2-02-004-CNS-2490, MKH2-02-004-CNS-1170, MKH2-02-004-CNS-1310 | 3d | 0d | Subgrade [5947]; Truck [320 h]; Road Roller [160 h]; Labor [320 h]; Driver [320 h]; Eq. Operator [160 h] | 130,834 | A 1210 | RD |
| MKH2-02-004-CNS-1350 |  | Aggregate base course [Local 28 ] | 14d | 2027-02-20 | 2027-03-08 | MKH2-02-004-CNS-1270, MKH2-02-004-PRC-1020, MKH2-02-004-CNS-1390 | 3d | 0d | Aggregate base course [3965]; Loader [140 h]; Truck [280 h]; Road Roller [140 h]; Labor [420 h]; Driver [280 h]; Eq. Operator [280 h] | 206,180 | A 1310 | RD |
|  | 2 | **Asphalt Works** |  | 2027-03-09 | 2027-04-01 |  |  |  |  |  |  |  |
| MKH2-02-004-CNS-1430 |  | Prime Coat (MC1) [Local 28 ] | 8d | 2027-03-09 | 2027-03-21 | MKH2-02-004-CNS-1350, MKH2-02-004-CNS-1460, MKH2-02-004-CNS-1470 | 3d | 0d | Bituminous base course (Grading I - Class A), including Prime Coat (MC1) [139]; Grader [80 h]; Truck [80 h]; Road Roller [80 h]; Asphalte Paver [80 h]; Labor [160 h]; Driver [80 h]; Eq. Operator [240 h] | 77,840 | A 1420 | RD |
| MKH2-02-004-CNS-1510 |  | Bituminous base course [Local 28 ] | 10d | 2027-03-22 | 2027-04-01 | MKH2-02-004-CNS-1430, MKH2-02-004-PRC-1050, MKH2-02-004-CNS-1540 | 3d | 0d | Bituminous base course (Grading I - Class A), including Prime Coat (MC1) [1249]; Truck [200 h]; Road Roller [100 h]; Asphalte Paver [100 h]; Labor [400 h]; Driver [200 h]; Eq. Operator [200 h] | 699,440 | A 1510 | RD |
|  | 3 | **Finishing Works** |  | 2027-04-03 | 2027-06-03 |  |  |  |  |  |  |  |
|  | 1 | **Precast Concrete Curb** |  | 2027-04-03 | 2027-04-13 |  |  |  |  |  |  |  |
| MKH2-02-004-CNS-1590 |  | Installation of Precast Concrete curb [Local 28 ] | 10d | 2027-04-03 | 2027-04-13 | MKH2-02-004-CNS-1510, MKH2-02-004-PRC-1080 | 3d | 0d | Depressed curbs Type K2 [3857]; Labor [600 h]; Skilled Labor [400 h] | 230,416.81 | A 1650 | RD |
|  | 2 | **Precast Interlocking block pavers** |  | 2027-04-14 | 2027-04-24 |  |  |  |  |  |  |  |
| MKH2-02-004-CNS-1670 |  | Installation of Interlocking block pavers for sidewalk/footpath [Local 28 ] | 9d | 2027-04-14 | 2027-04-24 | MKH2-02-004-CNS-1590, MKH2-02-004-PRC-1110 | 3d |  | 60mm thick - Interlocking block pavers for sidewalk/footpath [4426]; Labor [540 h]; Mason [1080 h] | 309,820 | A 1750 | RD |
|  | 3 | **Pavement Markings** |  | 2027-04-28 | 2027-05-24 |  |  |  |  |  |  |  |
| MKH2-02-004-CNS-1750 |  | Pavement markings [Local 28 ] | 10d | 2027-04-28 | 2027-05-09 | MKH2-02-004-CNS-1670, MKH2-02-004-PRC-1140, MKH2-02-004-CNS-1510, MKH2-02-004-CNS-1870 | 0d |  | Retroreflective Thermoplastic Yellow, Traffic lines [859]; Labor [100 h]; Skilled Labor [100 h] | 38,655 | A 1870 | RD |
| MKH2-02-004-CNS-1830 |  | (Speed Hump) with retroreflectiveThermoplastic yellow [Local 28 ] | 9d | 2027-05-10 | 2027-05-24 | MKH2-02-004-CNS-1750, MKH2-02-004-ABD-1020 | 0d |  | (Speed Hump) with retroreflectiveThermoplastic yellow [3]; Labor [270 h]; Skilled Labor [180 h] | 36,000 | A 1960 | RD |

| ID | WBS | Activity | Duration | Start | Finish | Predecessors | Total float | Free float | Resources | Cost | HM MAkkah 03 old activity id | Construction |
| --- | --- | --- | --- | --- | --- | --- | --- | --- | --- | --- | --- | --- |
|  | 4 | **Traffic Signage** |  | 2027-05-25 | 2027-06-03 |  |  |  |  |  |  |  |
| MKH2-02-004-CNS-1910 |  | Installation of Traffic Signs [Local 28 ] | 9d | 2027-05-25 | 2027-06-03 | MKH2-02-004-CNS-1830, MKH2-02-004-PRC-1170, MKH2-02-004-CNS-1510 | 0d |  | Traffic signs, ground mounted, Sheet Alumenium, (breakaway)Single post, with all accessories [27]; Labor [270 h]; Skilled Labor [180 h] | 48,600 | A 2060 | RD |
|  | 2 | **Storm Water Drainage** |  | 2026-12-07 | 2027-02-24 |  |  |  |  |  |  |  |
|  | 1 | **Pipe Works** |  | 2026-12-07 | 2027-01-31 |  |  |  |  |  |  |  |
| MKH2-02-004-CNS-2000 |  | Excavation & Compaction (FDT) [Local 28 ]-Stage 1 | 10d | 2026-12-07 | 2026-12-17 | MKH2-02-004-CNS-1170 | 3d | 0d | Depth: 0.0m - 1.5m [371]; Excavator [200 h]; Water Tanker [200 h]; Truck [400 h]; Compactor [200 h]; Labor [600 h]; Driver [600 h]; Eq. Operator [400 h] | 39,568.72 | A 2561 | SD |
| MKH2-02-004-CNS-2010 |  | Excavation & Compaction (FDT) [Local 28 ]-Stage 2 | 10d | 2026-12-19 | 2026-12-29 | MKH2-02-004-CNS-2000 | 3d | 0d | Depth: 0.0m - 1.5m [370]; Excavator [200 h]; Truck [400 h]; Labor [600 h]; Driver [400 h]; Eq. Operator [200 h] | 39,462.07 | A 2562 | SD |
| MKH2-02-004-CNS-2120 |  | Sand Bedding [Local 28 ]-Stage 1 | 8d | 2026-12-19 | 2026-12-27 | MKH2-02-004-CNS-2000 | 3d | 0d | Depth: 1.51m - 2.5m [371]; Loader [80 h]; Truck [80 h]; Labor [160 h]; Driver [80 h]; Eq. Operator [80 h] | 39,568.72 | A 2651 | SD |
| MKH2-02-004-CNS-2240 |  | Installation of GRP Pipe [Local 28 ]-Stage 1 | 10d | 2026-12-28 | 2027-01-07 | MKH2-02-004-CNS-2120, MKH2-02-004-PRC-1220 | 3d | 0d | Depth: 0.0m - 1.5m [371]; Labor [200 h]; Plumber [100 h] | 197,843.6 | A 2741 | SD |
| MKH2-02-004-CNS-2130 |  | Sand Bedding [Local 28 ]-Stage 2 | 8d | 2026-12-30 | 2027-01-07 | MKH2-02-004-CNS-2120, MKH2-02-004-CNS-2010 | 3d | 0d | Depth: 1.51m - 2.5m [370]; Loader [80 h]; Truck [80 h]; Labor [160 h]; Driver [80 h]; Eq. Operator [80 h] | 39,462.07 | A 2652 | SD |
| MKH2-02-004-CNS-2250 |  | Installation of GRP Pipe [Local 28 ]-Stage 2 | 10d | 2027-01-09 | 2027-01-19 | MKH2-02-004-CNS-2240, MKH2-02-004-CNS-2130, MKH2-02-004-PRC-1220 | 3d | 0d | Depth: 0.0m - 1.5m [370]; Crane [100 h]; Labor [200 h]; Eq. Operator [100 h]; Plumber [100 h] | 197,310.33 | A 2742 | SD |
| MKH2-02-004-CNS-2360 |  | Sand Cover & Warning Tape [Local 28 ]-Stage 1 | 5d | 2027-01-09 | 2027-01-13 | MKH2-02-004-CNS-2240 | 8d | 0d | Depth: more than 2.5m [371]; Loader [50 h]; Labor [100 h]; Skilled Labor [50 h]; Eq. Operator [50 h] | 79,137.44 | A 2831 | SD |
| MKH2-02-004-CNS-2480 |  | Backfilling & Compaction [Local 28 ]-Stage 1 | 5d | 2027-01-14 | 2027-01-19 | MKH2-02-004-CNS-2360 | 8d | 5d | Depth: less than 2.5 m [371]; Bulldozer [50 h]; Water Tanker [50 h]; Truck [50 h]; Compactor [50 h]; Labor [100 h]; Driver [100 h]; Eq. Operator [100 h] | 39,568.72 | A 2921 | SD |
| MKH2-02-004-CNS-2370 |  | Sand Cover & Warning Tape [Local 28 ]-Stage 2 | 5d | 2027-01-20 | 2027-01-25 | MKH2-02-004-CNS-2360, MKH2-02-004-CNS-2250 | 3d | 0d | Depth: more than 2.5m [370]; Loader [50 h]; Labor [100 h]; Skilled Labor [50 h]; Eq. Operator [50 h] | 78,924.13 | A 2832 | SD |
| MKH2-02-004-CNS-2490 |  | Backfilling & Compaction [Local 28 ]-Stage 2 | 5d | 2027-01-26 | 2027-01-31 | MKH2-02-004-CNS-2480, MKH2-02-004-CNS-2370 | 3d | 0d | Depth: less than 2.5 m [370]; Truck [50 h]; Labor [100 h]; Driver [50 h] | 39,462.07 | A 2922 | SD |
|  | 2 | **Manholes** |  | 2027-01-20 | 2027-02-06 |  |  |  |  |  |  |  |
| MKH2-02-004-CNS-2650 |  | Installation of Manholes [Local 28 ]-Stage 1-[MH 01 to MH 07] | 5d | 2027-01-20 | 2027-01-25 | MKH2-02-004-CNS-2250 | 23d | 0d | MH depth 0 - 1.5m [7]; Excavator [150 h]; Crane [150 h]; Labor [300 h]; Skilled Labor [150 h]; Eq. Operator [300 h] | 165,034.72 | A 3181 | SD |
| MKH2-02-004-CNS-2660 |  | Installation of Manholes [Local 28 ]-Stage 2-[MH 08 to MH 14] | 5d | 2027-01-26 | 2027-01-31 | MKH2-02-004-CNS-2650 | 23d | 0d | MH depth 0 - 1.5m [7]; Excavator [150 h]; Labor [300 h]; Skilled Labor [150 h]; Eq. Operator [150 h] | 165,034.72 | A 3182 | SD |
| MKH2-02-004-CNS-2670 |  | Installation of Manholes [Local 28 ]-Stage 3-[MH 15 to MH 20] | 5d | 2027-02-01 | 2027-02-06 | MKH2-02-004-CNS-2660 | 23d | 8d | MH depth 0 - 1.5m [6]; Crane [150 h]; Labor [300 h]; Skilled Labor [150 h]; Eq. Operator [150 h] | 141,458.33 | A 3183 | SD |
|  | 3 | **Catch Basins** |  | 2027-01-20 | 2027-02-17 |  |  |  |  |  |  |  |
| MKH2-02-004-CNS-2900 |  | Construction of Catch basins [Local 28 ]-Stage 1-[01 to 10] | 5d | 2027-01-20 | 2027-01-25 | MKH2-02-004-CNS-2250 | 15d | 0d | Double Catch basin [10]; Excavator [100 h]; Labor [200 h]; Eq. Operator [100 h]; Mason [100 h] | 73,606.81 | A 3301 | SD |
| MKH2-02-004-CNS-2910 |  | Construction of Catch basins [Local 28 ]-Stage 2-[11 to 20] | 5d | 2027-01-26 | 2027-01-31 | MKH2-02-004-CNS-2900 | 20d | 0d | Double Catch basin [10]; Labor [200 h]; Mason [100 h] | 73,606.81 | A 3302 | SD |
| MKH2-02-004-CNS-2920 |  | Construction of Catch basins [Local 28 ]-Stage 3-[21 to 30] | 5d | 2027-02-01 | 2027-02-06 | MKH2-02-004-CNS-2910 | 20d | 0d | Double Catch basin [10]; Excavator [100 h]; Labor [200 h]; Eq. Operator [100 h]; Mason [100 h] | 73,606.81 | A 3303 | SD |
| MKH2-02-004-CNS-2930 |  | Construction of Catch basins [Local 28 ]-Stage 4-[31 to 40] | 5d | 2027-02-07 | 2027-02-11 | MKH2-02-004-CNS-2920 | 20d | 0d | Double Catch basin [10]; Excavator [100 h]; Labor [200 h]; Eq. Operator [100 h]; Mason [100 h] | 73,606.81 | A 3304 | SD |
| MKH2-02-004-CNS-2940 |  | Construction of Catch basins [Local 28 ]-Stage 5-[41 to 50] | 5d | 2027-02-13 | 2027-02-17 | MKH2-02-004-CNS-2930 | 20d | 5d | Double Catch basin [10]; Labor [200 h]; Mason [100 h] | 73,606.81 | A 3305 | SD |

| ID | WBS | Activity | Duration | Start | Finish | Predecessors | Total float | Free float | Resources | Cost | HM MAkkah 03 old activity id | Construction |
| --- | --- | --- | --- | --- | --- | --- | --- | --- | --- | --- | --- | --- |
|  | 4 | **Concrete chambers Pipes** |  | 2027-01-26 | 2027-02-24 |  |  |  |  |  |  |  |
| MKH2-02-004-CNS-3160 |  | Excavation and Compaction (FDT) [Local 28 ] | 8d | 2027-01-26 | 2027-02-03 | MKH2-02-004-CNS-2900, MKH2-02-004-CNS-3310, MKH2-02-004-CNS-3300 | 15d | 0d | 300mm Diameter [993]; Water Tanker [240 h]; Truck [240 h]; Compactor [240 h]; Labor [480 h]; Driver [480 h]; Eq. Operator [240 h] | 82,981.81 | A 3420 | SD |
| MKH2-02-004-CNS-3250 |  | Installation of Pipes [Local 28 ] | 10d | 2027-02-04 | 2027-02-15 | MKH2-02-004-CNS-3160 | 15d | 0d | 400mm Diameter [993]; Loader [100 h]; Truck [100 h]; Labor [200 h]; Driver [100 h]; Eq. Operator [100 h]; Plumber [100 h] | 248,945.43 | A 3510 | SD |
| MKH2-02-004-CNS-3340 |  | Backfilling & Compaction [Local 28 ] | 7d | 2027-02-16 | 2027-02-24 | MKH2-02-004-CNS-3250, MKH2-02-004-CNS-2670 | 15d | 0d | 300mm Diameter [993]; Labor [280 h] | 82,981.81 | A 3600 | SD |
|  | 2 | **Local 10** |  | 2026-12-07 | 2027-05-08 |  |  |  |  |  |  |  |
|  | 1 | **Road Works** |  | 2026-12-07 | 2027-05-08 |  |  |  |  |  |  |  |
|  | 1 | **Eartworks & Site grading** |  | 2026-12-07 | 2027-03-27 |  |  |  |  |  |  |  |
| MKH2-02-004-CNS-1010 |  | Road excavation [Local 10 ] | 6d | 2026-12-07 | 2026-12-13 | MKH2-02-004-CNS-1170 | 18d | 0d | Roadway Excavation for cuttings (all types of soil) [10638]; Excavator [240 h]; Bulldozer [240 h]; Water Tanker [240 h]; Truck [480 h]; Labor [720 h]; Driver [720 h]; Eq. Operator [480 h] | 234,036 | A 1010 | RD |
| MKH2-02-004-CNS-1130 |  | Road backfilling [Local 10 ] | 6d | 2026-12-07 | 2026-12-13 | MKH2-02-004-CNS-1010 SS | 18d | 0d | Embankments to the ROW with common / suitable excavated material or with suitable imported material [5353]; Bulldozer [120 h]; Truck [240 h]; Road Roller [120 h]; Compactor [120 h]; Labor [360 h]; Driver [240 h]; Eq. Operator [360 h] | 85,648 | A 1100 | RD |
| MKH2-02-004-CNS-1250 |  | Subgrade [Local 10 ] | 7d | 2027-03-09 | 2027-03-20 | MKH2-02-004-CNS-1130, MKH2-02-004-CNS-2450, MKH2-02-004-CNS-1270, MKH2-02-004-CNS-1350, MKH2-02-004-CNS-1270 FF | 15d | 0d | Subgrade [1634]; Grader [70 h]; Truck [140 h]; Road Roller [70 h]; Labor [140 h]; Driver [140 h]; Eq. Operator [140 h] | 35,948 | A 1190 | RD |
| MKH2-02-004-CNS-1330 |  | Aggregate base course [Local 10 ] | 6d | 2027-03-21 | 2027-03-27 | MKH2-02-004-CNS-1250, MKH2-02-004-PRC-1020, MKH2-02-004-CNS-1350 | 15d | 0d | Aggregate base course [1090]; Loader [60 h]; Grader [60 h]; Truck [120 h]; Road Roller [60 h]; Labor [180 h]; Driver [120 h]; Eq. Operator [180 h] | 56,680 | A 1290 | RD |
|  | 2 | **Asphalt Works** |  | 2027-03-28 | 2027-04-05 |  |  |  |  |  |  |  |
| MKH2-02-004-CNS-1410 |  | Prime Coat (MC1) [Local 10 ] | 4d | 2027-03-28 | 2027-03-31 | MKH2-02-004-CNS-1330, MKH2-02-004-CNS-1430, MKH2-02-004-CNS-1430 FF | 23d | 0d | Bituminous base course (Grading I - Class A), including Prime Coat (MC1) [38]; Truck [40 h]; Road Roller [40 h]; Asphalte Paver [40 h]; Labor [80 h]; Driver [40 h]; Eq. Operator [80 h] | 21,280 | A 1400 | RD |
| MKH2-02-004-CNS-1490 |  | Bituminous base course [Local 10 ] | 4d | 2027-04-01 | 2027-04-05 | MKH2-02-004-CNS-1410, MKH2-02-004-PRC-1050 | 25d | 7d | Bituminous base course (Grading I - Class A), including Prime Coat (MC1) [343]; Truck [80 h]; Road Roller [40 h]; Labor [160 h]; Driver [80 h]; Eq. Operator [40 h] | 192,080 | A 1490 | RD |
|  | 3 | **Finishing Works** |  | 2027-04-14 | 2027-05-08 |  |  |  |  |  |  |  |
|  | 1 | **Precast Concrete Curb** |  | 2027-04-14 | 2027-04-20 |  |  |  |  |  |  |  |
| MKH2-02-004-CNS-1570 |  | Installation of Precast Concrete curb [Local 10 ] | 6d | 2027-04-14 | 2027-04-20 | MKH2-02-004-CNS-1490, MKH2-02-004-PRC-1080, MKH2-02-004-CNS-1590 | 18d | 0d | Precast Concrete Kerb, Type K4 [1060]; Labor [180 h]; Skilled Labor [120 h] | 63,324.3 | A 1630 | RD |
|  | 2 | **Precast Interlocking block pavers** |  | 2027-04-21 | 2027-04-26 |  |  |  |  |  |  |  |
| MKH2-02-004-CNS-1650 |  | Installation of Interlocking block pavers for sidewalk/footpath [Local 10 ] | 5d | 2027-04-21 | 2027-04-26 | MKH2-02-004-CNS-1570, MKH2-02-004-PRC-1110 | 19d | 0d | 60mm thick - Interlocking block pavers for sidewalk/footpath [1216]; Labor [150 h]; Mason [300 h] | 85,120 | A 1730 | RD |
|  | 3 | **Pavement Markings** |  | 2027-04-27 | 2027-05-04 |  |  |  |  |  |  |  |
| MKH2-02-004-CNS-1730 |  | Pavement markings [Local 10 ] | 4d | 2027-04-27 | 2027-05-01 | MKH2-02-004-CNS-1650, MKH2-02-004-PRC-1140, MKH2-02-004-CNS-1490 | 19d | 0d | Retroreflective Thermoplastic Yellow, Traffic lines [236]; Labor [40 h]; Skilled Labor [40 h] | 10,620 | A 1850 | RD |
| MKH2-02-004-CNS-1810 |  | (Speed Hump) with retroreflectiveThermoplastic yellow [Local 10 ] | 3d | 2027-05-02 | 2027-05-04 | MKH2-02-004-CNS-1730 | 19d | 0d | (Speed Hump) with retroreflectiveThermoplastic yellow [1]; Labor [90 h]; Skilled Labor [60 h] | 12,000 | A 1940 | RD |
|  | 4 | **Traffic Signage** |  | 2027-05-05 | 2027-05-08 |  |  |  |  |  |  |  |
| MKH2-02-004-CNS-1890 |  | Installation of Traffic Signs [Local 10 ] | 3d | 2027-05-05 | 2027-05-08 | MKH2-02-004-CNS-1810, MKH2-02-004-PRC-1170, MKH2-02-004-CNS-1490 | 19d |  | Traffic signs, ground mounted, Sheet Alumenium, (breakaway)Single post, with all accessories [7]; Labor [90 h]; Skilled Labor [60 h] | 12,600 | A 2040 | RD |

| ID | WBS | Activity | Duration | Start | Finish | Predecessors | Total float | Free float | Resources | Cost | HM MAkkah 03 old activity id | Construction |
| --- | --- | --- | --- | --- | --- | --- | --- | --- | --- | --- | --- | --- |
|  | 2 | **Storm Water Drainage** |  | 2026-12-14 | 2027-01-18 |  |  |  |  |  |  |  |
|  | 1 | **Pipe Works** |  | 2026-12-14 | 2027-01-02 |  |  |  |  |  |  |  |
| MKH2-02-004-CNS-1970 |  | Excavation & Compaction (FDT) [Local 10 ] | 4d | 2026-12-14 | 2026-12-17 | MKH2-02-004-CNS-1130 | 21d | 0d | Depth: 0.0m - 1.5m [139]; Excavator [80 h]; Truck [160 h]; Labor [240 h]; Driver [160 h]; Eq. Operator [80 h] | 14,824.94 | A 2540 | SD |
| MKH2-02-004-CNS-2090 |  | Sand Bedding [Local 10 ] | 3d | 2026-12-19 | 2026-12-21 | MKH2-02-004-CNS-1970 | 21d | 0d | Depth: 1.51m - 2.5m [139]; Loader [30 h]; Truck [30 h]; Labor [60 h]; Driver [30 h]; Eq. Operator [30 h] | 14,824.94 | A 2630 | SD |
| MKH2-02-004-CNS-2210 |  | Installation of GRP Pipe [Local 10 ] | 5d | 2026-12-22 | 2026-12-27 | MKH2-02-004-CNS-2090, MKH2-02-004-PRC-1220 | 21d | 0d | Depth: 1.51m - 2.5m [139]; Crane [50 h]; Labor [100 h]; Eq. Operator [50 h]; Plumber [50 h] | 74,124.69 | A 2720 | SD |
| MKH2-02-004-CNS-2330 |  | Sand Cover & Warning Tape [Local 10 ] | 2d | 2026-12-28 | 2026-12-29 | MKH2-02-004-CNS-2210 | 27d | 0d | Depth: 0.0m - 1.5m [139]; Loader [20 h]; Labor [40 h]; Skilled Labor [20 h]; Eq. Operator [20 h] | 29,649.88 | A 2810 | SD |
| MKH2-02-004-CNS-2450 |  | Backfilling & Compaction [Local 10 ] | 3d | 2026-12-30 | 2027-01-02 | MKH2-02-004-CNS-2330 | 27d | 0d | Depth: 2.51m - 3.5m [139]; Bulldozer [30 h]; Truck [30 h]; Labor [60 h]; Driver [30 h]; Eq. Operator [30 h] | 14,824.94 | A 2900 | SD |
|  | 2 | **Manholes** |  | 2026-12-28 | 2027-01-07 |  |  |  |  |  |  |  |
| MKH2-02-004-CNS-2580 |  | Installation of Manholes [Local 10 ]-Stage 1-[MH 01 to MH 07] | 5d | 2026-12-28 | 2027-01-02 | MKH2-02-004-CNS-2210 | 21d | 0d | MH depth 1.51 - 2.5m [7]; Labor [300 h]; Skilled Labor [150 h] | 165,034.72 | A 3161 | SD |
| MKH2-02-004-CNS-2590 |  | Installation of Manholes [Local 10 ]-Stage 2-[MH 08 to MH 11] | 5d | 2027-01-03 | 2027-01-07 | MKH2-02-004-CNS-2580, MKH2-02-004-CNS-2450 | 27d | 6d | MH depth 1.51 - 2.5m [4]; Excavator [100 h]; Crane [100 h]; Labor [200 h]; Skilled Labor [100 h]; Eq. Operator [200 h] | 94,305.56 | A 3162 | SD |
|  | 3 | **Catch Basins** |  | 2027-01-03 | 2027-01-06 |  |  |  |  |  |  |  |
| MKH2-02-004-CNS-2790 |  | Construction of Catch basins [Local 10 ] | 4d | 2027-01-03 | 2027-01-06 | MKH2-02-004-PRC-1300, MKH2-02-004-CNS-2210, MKH2-02-004-CNS-2580, MKH2-02-004-CNS-2990 | 21d | 0d | Double Catch basin [10]; Labor [80 h]; Mason [40 h] | 73,606.81 | A 3280 | SD |
|  | 4 | **Concrete chambers Pipes** |  | 2027-01-07 | 2027-01-18 |  |  |  |  |  |  |  |
| MKH2-02-004-CNS-3130 |  | Excavation and Compaction (FDT) [Local 10 ] | 3d | 2027-01-07 | 2027-01-10 | MKH2-02-004-CNS-2790 | 21d | 0d | 300mm Diameter [174]; Excavator [30 h]; Truck [30 h]; Labor [60 h]; Driver [30 h]; Eq. Operator [30 h] | 14,540.62 | A 3400 | SD |
| MKH2-02-004-CNS-3220 |  | Installation of Pipes [Local 10 ] | 4d | 2027-01-11 | 2027-01-14 | MKH2-02-004-CNS-3130 | 21d | 0d | 400mm Diameter [174]; Loader [40 h]; Truck [40 h]; Labor [80 h]; Driver [40 h]; Eq. Operator [40 h]; Plumber [40 h] | 43,621.86 | A 3490 | SD |
| MKH2-02-004-CNS-3310 |  | Backfilling & Compaction [Local 10 ] | 3d | 2027-01-16 | 2027-01-18 | MKH2-02-004-CNS-3220, MKH2-02-004-CNS-2590 | 21d | 6d | 300mm Diameter [174]; Labor [60 h] | 14,540.62 | A 3580 | SD |
|  | 1 | **Collector 02** |  | 2026-12-14 | 2027-05-12 |  |  |  |  |  |  |  |
|  | 1 | **Road Works** |  | 2026-12-14 | 2027-05-12 |  |  |  |  |  |  |  |
|  | 1 | **Eartworks & Site grading** |  | 2026-12-14 | 2027-04-10 |  |  |  |  |  |  |  |
| MKH2-02-004-CNS-1000 |  | Road excavation [Collector 02 ] | 6d | 2026-12-14 | 2026-12-20 | MKH2-02-004-CNS-1130 | 18d | 0d | Roadway Excavation for cuttings (all types of soil) [6145]; Excavator [120 h]; Bulldozer [120 h]; Water Tanker [120 h]; Grader [120 h]; Truck [240 h]; Bobcat [120 h]; Labor [360 h]; Driver [360 h]; Eq. Operator [480 h] | 135,190 | A 1000 | RD |
| MKH2-02-004-CNS-1120 |  | Road backfilling [Collector 02 ] | 6d | 2026-12-14 | 2026-12-20 | MKH2-02-004-CNS-1000 SS | 18d | 0d | Embankments to the ROW with common / suitable excavated material or with suitable imported material [3092]; Bulldozer [60 h]; Water Tanker [60 h]; Grader [60 h]; Truck [120 h]; Road Roller [60 h]; Bobcat [60 h]; Labor [180 h]; Driver [180 h]; Eq. Operator [240 h] | 49,472 | A 1090 | RD |
| MKH2-02-004-CNS-1240 |  | Subgrade [Collector 02 ] | 6d | 2027-03-28 | 2027-04-03 | MKH2-02-004-CNS-1120, MKH2-02-004-CNS-2440, MKH2-02-004-CNS-1330, MKH2-02-004-CNS-1250 | 15d | 0d | Subgrade [944]; Water Tanker [60 h]; Truck [120 h]; Road Roller [60 h]; Compactor [60 h]; Labor [120 h]; Driver [180 h]; Eq. Operator [120 h] | 20,768 | A 1180 | RD |
| MKH2-02-004-CNS-1320 |  | Aggregate base course [Collector 02 ] | 6d | 2027-04-04 | 2027-04-10 | MKH2-02-004-CNS-1240, MKH2-02-004-PRC-1020, MKH2-02-004-CNS-1330 | 15d | 0d | Aggregate base course [629]; Loader [60 h]; Water Tanker [60 h]; Truck [120 h]; Road Roller [60 h]; Labor [180 h]; Driver [180 h]; Eq. Operator [120 h] | 32,708 | A 1280 | RD |
|  | 2 | **Asphalt Works** |  | 2027-04-11 | 2027-04-24 |  |  |  |  |  |  |  |
| MKH2-02-004-CNS-1400 |  | Prime Coat (MC1) [Collector 02 ] | 6d | 2027-04-11 | 2027-04-17 | MKH2-02-004-CNS-1320, MKH2-02-004-CNS-1410 | 15d | 0d | Bituminous base course (Grading I - Class A), including Prime Coat (MC1) [22]; Water Tanker [60 h]; Grader [60 h]; Truck [60 h]; Road Roller [60 h]; Asphalte Paver [60 h]; Labor [120 h]; Driver [120 h]; Eq. Operator [180 h] | 12,320 | A 1390 | RD |
| MKH2-02-004-CNS-1480 |  | Bituminous base course [Collector 02 ] | 6d | 2027-04-18 | 2027-04-24 | MKH2-02-004-CNS-1400, MKH2-02-004-PRC-1050 | 15d | 0d | Bituminous base course (Grading I - Class A), including Prime Coat (MC1) [199]; Truck [120 h]; Road Roller [60 h]; Asphalte Paver [60 h]; Labor [240 h]; Driver [120 h]; Eq. Operator [120 h] | 111,440 | A 1480 | RD |

| ID | WBS | Activity | Duration | Start | Finish | Predecessors | Total float | Free float | Resources | Cost | HM MAkkah 03 old activity id | Construction |
| --- | --- | --- | --- | --- | --- | --- | --- | --- | --- | --- | --- | --- |
|  | 3 | **Finishing Works** |  | 2027-04-25 | 2027-05-12 |  |  |  |  |  |  |  |
|  | 1 | **Precast Concrete Curb** |  | 2027-04-25 | 2027-04-28 |  |  |  |  |  |  |  |
| MKH2-02-004-CNS-1560 |  | Installation of Precast Concrete curb [Collector 02 ] | 4d | 2027-04-25 | 2027-04-28 | MKH2-02-004-CNS-1480, MKH2-02-004-PRC-1080, MKH2-02-004-CNS-1570, MKH2-02-004-KM-1050 | 15d | 0d | Precast Concrete Kerb, Type K1-A [612]; Labor [120 h]; Skilled Labor [80 h] | 36,560.82 | A 1620 | RD |
|  | 2 | **Precast Interlocking block pavers** |  | 2027-04-29 | 2027-05-02 |  |  |  |  |  |  |  |
| MKH2-02-004-CNS-1640 |  | Installation of Interlocking block pavers for sidewalk/footpath [Collector 02 ] | 3d | 2027-04-29 | 2027-05-02 | MKH2-02-004-CNS-1560, MKH2-02-004-PRC-1110 | 15d | 0d | 60mm thick - Interlocking block pavers for sidewalk/footpath [702]; Road Roller [30 h]; Compactor [30 h]; Labor [90 h]; Eq. Operator [60 h]; Mason [180 h] | 49,140 | A 1720 | RD |
|  | 3 | **Pavement Markings** |  | 2027-05-03 | 2027-05-09 |  |  |  |  |  |  |  |
| MKH2-02-004-CNS-1720 |  | Pavement markings [Collector 02 ] | 3d | 2027-05-03 | 2027-05-05 | MKH2-02-004-CNS-1640, MKH2-02-004-PRC-1140, MKH2-02-004-CNS-1480 | 15d | 0d | Retroreflective Thermoplastic White Traffic lines [136]; Labor [30 h]; Skilled Labor [30 h] | 6,120 | A 1840 | RD |
| MKH2-02-004-CNS-1800 |  | (Speed Hump) with retroreflectiveThermoplastic yellow [Collector 02 ] | 3d | 2027-05-06 | 2027-05-09 | MKH2-02-004-CNS-1720, MKH2-02-004-CNS-1480 | 15d | 0d | (Speed Hump) with retroreflectiveThermoplastic yellow [1]; Labor [90 h]; Skilled Labor [60 h] | 12,000 | A 1930 | RD |
|  | 4 | **Traffic Signage** |  | 2027-05-10 | 2027-05-12 |  |  |  |  |  |  |  |
| MKH2-02-004-CNS-1880 |  | Installation of Traffic Signs [Collector 02 ] | 3d | 2027-05-10 | 2027-05-12 | MKH2-02-004-CNS-1800, MKH2-02-004-PRC-1170, MKH2-02-004-CNS-1480 | 15d |  | Traffic signs, ground mounted, Sheet Alumenium, (breakaway)Single post, with all accessories [4]; Labor [90 h]; Skilled Labor [60 h] | 7,200 | A 2030 | RD |
|  | 2 | **Storm Water Drainage** |  | 2026-12-21 | 2027-01-21 |  |  |  |  |  |  |  |
|  | 1 | **Pipe Works** |  | 2026-12-21 | 2027-01-13 |  |  |  |  |  |  |  |
| MKH2-02-004-CNS-1960 |  | Excavation & Compaction (FDT) [Collector 02 ] | 4d | 2026-12-21 | 2026-12-24 | MKH2-02-004-CNS-1120 | 18d | 0d | Depth: 0.0m - 1.5m [254]; Excavator [160 h]; Water Tanker [160 h]; Truck [320 h]; Bobcat [160 h]; Compactor [160 h]; Labor [480 h]; Driver [480 h]; Eq. Operator [480 h] | 27,090.18 | A 2530 | SD |
| MKH2-02-004-CNS-2080 |  | Sand Bedding [Collector 02 ] | 3d | 2026-12-26 | 2026-12-28 | MKH2-02-004-CNS-1960 | 18d | 0d | Depth: 1.51m - 2.5m [254]; Loader [60 h]; Truck [60 h]; Labor [120 h]; Driver [60 h]; Eq. Operator [60 h] | 27,090.18 | A 2620 | SD |
| MKH2-02-004-CNS-2200 |  | Installation of GRP Pipe [Collector 02 ] | 5d | 2026-12-29 | 2027-01-03 | MKH2-02-004-CNS-2080, MKH2-02-004-PRC-1220 | 18d | 0d | Depth: 0.0m - 1.5m [254]; Labor [100 h]; Plumber [50 h] | 135,450.88 | A 2710 | SD |
| MKH2-02-004-CNS-2320 |  | Sand Cover & Warning Tape [Collector 02 ] | 3d | 2027-01-04 | 2027-01-06 | MKH2-02-004-CNS-2200 | 18d | 0d | Depth: more than 2.5m [254]; Loader [30 h]; Labor [60 h]; Skilled Labor [30 h]; Eq. Operator [30 h] | 54,180.35 | A 2800 | SD |
| MKH2-02-004-CNS-2440 |  | Backfilling & Compaction [Collector 02 ] | 6d | 2027-01-07 | 2027-01-13 | MKH2-02-004-CNS-2320 | 18d | 0d | Depth: less than 2.5 m [254]; Bulldozer [60 h]; Water Tanker [60 h]; Truck [60 h]; Compactor [60 h]; Labor [120 h]; Driver [120 h]; Eq. Operator [120 h] | 27,090.18 | A 2890 | SD |
|  | 2 | **Manholes** |  | 2027-01-04 | 2027-01-17 |  |  |  |  |  |  |  |
| MKH2-02-004-CNS-2560 |  | Installation of Manholes [Collector 02 ]-Stage 1-[MH 01 to MH 07] | 6d | 2027-01-04 | 2027-01-10 | MKH2-02-004-CNS-2200 | 18d | 0d | MH depth 0 - 1.5m [7]; Excavator [180 h]; Crane [180 h]; Labor [360 h]; Skilled Labor [180 h]; Eq. Operator [360 h] | 165,034.72 | A 3151 | SD |
| MKH2-02-004-CNS-2570 |  | Installation of Manholes [Collector 02 ]-Stage 2-[MH 08 to MH 11] | 6d | 2027-01-11 | 2027-01-17 | MKH2-02-004-CNS-2560 | 20d | 2d | MH depth 0 - 1.5m [4]; Excavator [60 h]; Crane [60 h]; Labor [120 h]; Skilled Labor [60 h]; Eq. Operator [120 h] | 94,305.56 | A 3152 | SD |
|  | 3 | **Catch Basins** |  | 2027-01-11 | 2027-01-13 |  |  |  |  |  |  |  |
| MKH2-02-004-CNS-2780 |  | Construction of Catch basins [Collector 02 ] | 3d | 2027-01-11 | 2027-01-13 | MKH2-02-004-PRC-1300, MKH2-02-004-CNS-2560, MKH2-02-004-CNS-2890 | 18d | 0d | Single Catch basin [2]; Excavator [30 h]; Labor [60 h]; Eq. Operator [30 h]; Mason [30 h] | 14,721.36 | A 3270 | SD |
|  | 4 | **Concrete chambers Pipes** |  | 2027-01-14 | 2027-01-21 |  |  |  |  |  |  |  |
| MKH2-02-004-CNS-3120 |  | Excavation and Compaction (FDT) [Collector 02 ] | 2d | 2027-01-14 | 2027-01-16 | MKH2-02-004-CNS-2780, MKH2-02-004-CNS-2440 | 18d | 0d | 300mm Diameter [5]; Water Tanker [20 h]; Truck [20 h]; Compactor [20 h]; Labor [40 h]; Driver [40 h]; Eq. Operator [20 h] | 417.83 | A 3390 | SD |
| MKH2-02-004-CNS-3210 |  | Installation of Pipes [Collector 02 ] | 3d | 2027-01-17 | 2027-01-19 | MKH2-02-004-CNS-3120 | 18d | 0d | 400mm Diameter [5]; Loader [30 h]; Truck [30 h]; Crane [30 h]; Labor [60 h]; Driver [30 h]; Eq. Operator [60 h]; Plumber [30 h] | 1,253.5 | A 3480 | SD |
| MKH2-02-004-CNS-3300 |  | Backfilling & Compaction [Collector 02 ] | 2d | 2027-01-20 | 2027-01-21 | MKH2-02-004-CNS-3210, MKH2-02-004-CNS-2570 | 18d | 3d | 300mm Diameter [5]; Labor [40 h]; Plumber [20 h] | 417.74 | A 3570 | SD |

| ID | WBS | Activity | Duration | Start | Finish | Predecessors | Total float | Free float | Calendar | HM MAkkah 03 old activity id |
| --- | --- | --- | --- | --- | --- | --- | --- | --- | --- | --- |
|  | 6 | **Testing and Commissioning** |  | 2027-02-25 | 2027-06-27 |  |  |  |  |  |
| MKH2-02-004-T&C-1000 |  | Test for Stormwater Utilities | 20d | 2027-02-25 | 2027-03-23 | MKH2-02-004-CNS-3350, MKH2-02-004-CNS-3380, MKH2-02-004-CNS-2520, MKH2-02-004-CNS-3360, MKH2-02-004-CNS-2530, MKH2-02-004-CNS-3370, MKH2-02-004-CNS-3340, MKH2-02-004-CNS-2450, MKH2-02-004-CNS-3310, MKH2-02-004-CNS-2440, MKH2-02-004-CNS-3300, MKH2-02-004-CNS-3330, MKH2-02-004-KM-1060, MKH2-02-004-CNS-2940 | 15d | 0d |  | JDH4-02-007-TC-1030 |
| MKH2-02-004-T&C-1010 |  | Test for Road Works | 20d | 2027-06-05 | 2027-06-27 | MKH2-02-004-CNS-1920, MKH2-02-004-CNS-1950, MKH2-02-004-CNS-1930, MKH2-02-004-CNS-1940, MKH2-02-004-CNS-1910, MKH2-02-004-CNS-1900, MKH2-02-004-CNS-1890, MKH2-02-004-CNS-1880 | 0d |  |  | JDH4-02-007-TC-1060 |
|  | 7 | **Project Hand Over & Close-out** |  | 2027-03-24 | 2027-08-24 |  |  |  |  |  |
|  | 1 | **As-Built DWGs** |  | 2027-03-24 | 2027-08-01 |  |  |  |  |  |
|  | 1 | **As-Built DWGs Submittal** |  | 2027-03-24 | 2027-07-14 |  |  |  |  |  |
| MKH2-02-004-ABD-1000 |  | As-Built DWGs Submittal for Stormwater Utilities | 15d | 2027-03-24 | 2027-04-10 | MKH2-02-004-T&C-1000 | 15d | 0d |  | JDH4-02-007-AB-1030 |
| MKH2-02-004-ABD-1010 |  | As-Built DWGs Submittal for Road Works | 15d | 2027-06-28 | 2027-07-14 | MKH2-02-004-T&C-1010 | 0d |  |  | JDH4-02-007-AB-1060 |
|  | 2 | **As-Built DWGs Approval** |  | 2027-04-11 | 2027-08-01 |  |  |  |  |  |
| MKH2-02-004-ABD-1020 |  | As- Built DWGs Approval for Stormwater Utilities | 10d | 2027-04-11 | 2027-04-21 | MKH2-02-004-ABD-1000 | 15d |  | MODON-(6 Day X 8hrs) | JDH4-02-007-AB-1100 |
| MKH2-02-004-ABD-1030 |  | As- Built DWGs Approval for Road Works | 15d | 2027-07-15 | 2027-08-01 | MKH2-02-004-ABD-1010, MKH2-02-004-ABD-1020 | 0d |  | MODON-(6 Day X 8hrs) | JDH4-02-007-AB-1130 |
|  | 2 | **Demobilization** |  | 2027-08-02 | 2027-08-24 |  |  |  |  |  |
| MKH2-02-004-DEM-1000 |  | Demobilization of Manpower | 10d | 2027-08-02 | 2027-08-12 | MKH2-02-004-ABD-1020, MKH2-02-004-ABD-1030 | 0d |  |  | JDH4-02-007-DM-1000 |
| MKH2-02-004-DEM-1010 |  | Removal of Equipment from Site | 10d | 2027-08-02 | 2027-08-12 | MKH2-02-004-ABD-1020, MKH2-02-004-ABD-1030 | 0d |  |  | JDH4-02-007-DM-1010 |
| MKH2-02-004-DEM-1020 |  | Site Clean Up | 10d | 2027-08-02 | 2027-08-12 | MKH2-02-004-ABD-1020, MKH2-02-004-ABD-1030 | 0d |  |  | JDH4-02-007-DM-1020 |
| MKH2-02-004-DEM-1030 |  | Removal of Site Offices and Structures | 10d | 2027-08-02 | 2027-08-12 | MKH2-02-004-ABD-1020, MKH2-02-004-ABD-1030 | 0d |  |  | JDH4-02-007-DM-1030 |
| MKH2-02-004-DEM-1040 |  | Restoration of Ground Surfaces | 10d | 2027-08-14 | 2027-08-24 | MKH2-02-004-DEM-1030, MKH2-02-004-DEM-1020, MKH2-02-004-DEM-1010, MKH2-02-004-DEM-1000 | 0d |  |  | JDH4-02-007-DM-1040 |

## Activity codes

| Code | Value | Meaning |
| --- | --- | --- |
| Construction | RD | Road Works |
| Construction | SD | Storm Water Drainage Network |
| Procurement | PR-RD | Road Works Materials |
| Procurement | PR-SD | Storm Works Materials |
| Shop Drawings | RSD | Shop DWGs Roads |
| Shop Drawings | SSD | Shop DWGs Storm |
